# 823B As-built Programme

Schedule from Primavera P6, 2010-10-20 to 2017-02-17, data date 2016-10-01, A marks actual dates.
This as-built programme is using the / progressed master programme under Contractor's Monthly Progress Report (Sep / 2016) as the template. Baseline line is RMP ver. D

## Calendars

- 823B (6 days - 9 hours): Mon-Sat 08:00-12:00, 14:00-18:00; Sun off.
- 823B (7 days - 9 hours): Mon-Sun 08:00-12:00, 14:00-18:00.

## Resources

| Resource | Group | Unit |
| --- | --- | --- |
| Concrete | material | Cu m |
| Rebar | material | t |
| Backfilling | material | Cu m |
| Bulk Excavation | material | Cu m |
| Excavation | material | Cu m |
| Labour | material | NO |
| Labour | equipment |  |
| Operator | material | NO |
| Other - Plant & Equipment | material | NO |
| Operator | equipment |  |
| Other - Plant & Equipment | equipment |  |
| Concrete (Buildings & External) | material | Cu m |
| Activity Weighting | material |  |
| Backhoe | equipment |  |
| Grab Lorry | equipment |  |
| Labour | equipment |  |
| Plant Operator | equipment |  |
| Truck Driver | equipment |  |
| Tipping Lorry | equipment |  |
| Drill Rig | equipment |  |
| Rigger | equipment |  |
| Skilled Labour | equipment |  |
| Box Culvert | material | m |
| East Box Culvert | material | m |

## Schedule

| ID | WBS | Activity | Type | Duration | Start | Finish | Predecessors | Complete | Planned start | Planned finish | Total float | Free float | Constraint | Calendar | 823B_As-built | PRELIM | 823B_As-built-verified |
| --- | --- | --- | --- | --- | --- | --- | --- | --- | --- | --- | --- | --- | --- | --- | --- | --- | --- |
|  | 1 | **CONTRACTUAL DATES** |  |  | 2010-10-20 | 2016-10-31 |  |  |  |  |  |  |  |  |  |  |  |
| 823B-CD-10 |  | Letter of Acceptance | milestone | 0d | 2010-10-20 A | 2010-10-20 A |  | 100% |  |  |  |  | start on 2010-10-20 | 823B (7 days - 9 hours) | 823B_AB |  |  |
| 823B-CD-20 |  | Date of Commencement of Works | milestone | 0d | 2010-10-25 A | 2010-10-25 A | 823B-CD-10 | 100% |  |  |  |  | start on 2010-10-25 | 823B (7 days - 9 hours) | 823B_AB | H002 |  |
| 823B-CD-30 |  | Completion of the Works | milestone | 0d | 2016-10-31 | 2016-10-31 | 823B-WMD-1010, 823B-ERS-A1-RT-1150, 823B-ERS-A1-RT-1190, 823B-A-ADC-0000, 823B-A-TWS-0040, 823B-A-TWS-0010, 823B-A-TWS-0030, 823B-A-TWS-0070, 823B-A-TWS-0080, 823B-A-PWS-0670, 823B-A-PWS-0770, 823B-A-PWS-0870, 823B-A-PSA-0050, 823B-ERS-A3-RT-1230, 823B-ERS-A6-RT-1080, 823B-WBC-1020, 823B-J-SHT-1110, 823B-J-SPS-1100, 823B-NB3.5-1140, 823B-NB12-G-1080, 823B-NB3.5-1150, 823B-RHW-2030, 823B-RHW-3030, 823B-RHW-4020, 823B-RDW-1087, 823B-RDW-1095 |  |  |  | -540d | 0d | finish on or before 2015-05-10 | 823B (7 days - 9 hours) |  | H002 |  |
|  | 3 | **SPECIFIED PARTS OF THE WORKS** |  |  | 2013-03-24 | 2014-04-28 |  |  |  |  |  |  |  |  |  |  |  |
| 823B-KD-3C |  | Complete the East Culvert and associated drainage connections | milestone | 0d | 2013-03-24 A | 2013-03-24 A | 823B-EBC-1010, 823B-EBC-1040, 823B-EBC-1090, 823B-EBC-1140, 823B-EBC-1170, 823B-EBC-1210, 823B-EBC-1250, 823B-EBC-1320, 823B-EBC-1370, 823B-EBC-1420, 823B-EBC-1470, 823B-EBC-1510, 823B-EBC-1560, 823B-EBC-1580, 823B-EBC-1020, 823B-EBC-1100, 823B-EBC-1240, 823B-EBC-1260, 823B-EBC-1290, 823B-EBC-1310, 823B-EBC-1330, 823B-EBC-1380, 823B-EBC-1410, 823B-EBC-1435, 823B-EBC-1570, 823B-EBC-1520 | 100% | 2013-03-23 | 2013-03-23 |  |  | finish on or before 2013-03-24 | 823B (7 days - 9 hours) | 823B_AB | H002 | 823B_AB |
| 823B-KD-3E |  | Complete all utilities, underground services and the noise barrier foundation incl backfilling within WA 4.19A, B & C | milestone | 0d | 2013-03-31 A | 2013-03-31 A | 823B-NOB-1010 | 100% | 2013-03-28 | 2013-03-28 |  |  | finish on or before 2013-03-31 | 823B (7 days - 9 hours) | 823B_AB | H002 | 823B_AB |
| 823B-KD-3F |  | Complete all works for the Shek Kok Feeder Station necessary for statutory inspections | milestone | 0d | 2014-01-05 A | 2014-01-05 A | 823B-H-SHK-A-1130, 823B-H-SHK-Z2-1330, 823B-RDW-1040, 823B-RDW-1025 | 100% | 2016-06-01 | 2016-06-01 |  |  | finish on or before 2014-01-05 | 823B (7 days - 9 hours) | 823B_AB | H002 | 823B_AB |
| 823B-KD-3G |  | Complete all works for SSS, ERS and ancillary buildings necessary for statutory inspections | milestone | 0d | 2014-04-28 A | 2014-04-28 A | 823B-RDW-1030, 823B-RDW-1060, 823B-RMSA-1290, 823B-ERS-A1-RT-1150, 823B-ERS-A1-RT-1190, 823B-AC-0215, 823B-AC-0220, 823B-HO-0200, 823B-HO-0205, 823B-HO-0210, 823B-PD-70010, 823B-PD-70020, 823B-WBC-1020, 823B-NB10-G-1060, 823B-NB9-G-1070, 823B-NB3.5-1130, 823B-NB12-G-1050, 823B-NB3.5-1130 FF, 823B-NB9-G-1060, 823B-J-SHT-1110, 823B-RDW-1035, 823B-RDW-1055, 823B-RDW-1067, 823B-G-IBP-B-3000 | 100% | 2016-07-23 | 2016-07-23 |  |  | finish on or before 2014-09-28 | 823B (7 days - 9 hours) | 823B_AB | H002 | 823B_AB |
|  | 4 | **SPECIFIED DEGREES OF COMPLETION** |  |  | 2012-12-02 | 2016-04-28 |  |  |  |  |  |  |  |  |  |  |  |
| 823B-KD-4H-1° |  | Shek Kong Feeder Station | milestone | 0d | 2012-12-02 A | 2012-12-02 A | 823B-H-SHK-A-1010, 823B-H-SHK-A-1020, 823B-H-SHK-A-1030, 823B-H-SHK-A-1040, 823B-H-SHK-A-1090, 823B-H-SHK-A-1100, 823B-H-SHK-B-3000, 823B-H-SHK-B-4000 | 100% | 2012-12-01 | 2012-12-01 |  |  | finish on or before 2012-12-02 | 823B (7 days - 9 hours) | 823B_AB | H002 | 823B_AB |
| 823B-KD-4J-1° |  | Infrastructure, Building Maintenance and Pway Buildings (IBP) | milestone | 0d | 2013-02-24 A | 2013-02-24 A | 823B-G-IBP-S-1220, 823B-G-IBP-S-1230, 823B-G-IBP-S-1240, 823B-G-IBP-A-2070, 823B-G-IBP-A-2060, 823B-G-IBP-A-2050, 823B-G-IBP-A-2040, 823B-G-IBP-A-2030, 823B-G-IBP-A-2020, 823B-G-IBP-A-2010, 823B-G-IBP-A-2260, 823B-G-IBP-B-2000, 823B-G-IBP-B-3000 | 100% | 2013-02-23 | 2013-02-23 |  |  | finish on or before 2013-02-24 | 823B (7 days - 9 hours) | 823B_AB | H002 | 823B_AB |
| 823B-KD-4H-2° |  | Shek Kong Feeder Station | milestone | 0d | 2013-03-10 A | 2013-03-10 A | 823B-H-SHK-A-1050, 823B-H-SHK-A-1060, 823B-H-SHK-A-1070, 823B-H-SHK-A-1080 | 100% | 2013-03-09 | 2013-03-09 |  |  | finish on or before 2013-03-10 | 823B (7 days - 9 hours) | 823B_AB | H002 | 823B_AB |
| 823B-KD-4A(ii) |  | Emergency Rescue Siding (ERS) Running Tunnels Area 3-5 | milestone | 0d | 2013-03-31 A | 2013-03-31 A | 823B-ERS-A4-RT-1070, 823B-ERS-A3-RT-1080, 823B-ERS-A3-RT-1110, 823B-ERS-A3-RT-1160, 823B-ERS-A3-RT-1170, 823B-ERS-A3-RT-1200, 823B-ERS-A3-RT-1210, 823B-ERS-A4-RT-1020, 823B-ERS-A4-RT-1030, 823B-ERS-A4-RT-1050, 823B-ERS-A4-RT-1060, 823B-ERS-A4-RT-1110, 823B-ERS-A4-RT-1120, 823B-ERS-A4-RT-1130, 823B-ERS-A4-RT-1150, 823B-ERS-A4-RT-1160, 823B-ERS-A4-RT-1170, 823B-ERS-A4-RT-1180, 823B-ERS-A5-RT-1020, 823B-ERS-A5-RT-1030, 823B-ERS-A5-RT-1040, 823B-ERS-A5-RT-1060, 823B-ERS-A5-RT-1070, 823B-ERS-A5-RT-1080, 823B-ERS-A5-RT-1100, 823B-ERS-A5-RT-1110, 823B-ERS-A5-RT-1120, 823B-ERS-A5-RT-1140, 823B-ERS-A5-RT-1150, 823B-ERS-A5-RT-1160, 823B-ERS-A5-RT-1180, 823B-ERS-A5-RT-1190, 823B-ERS-A5-RT-1210, 823B-ERS-A5-RT-1220, 823B-ERS-A5-RT-1230, 823B-ERS-A3-RT-1050, 823B-ERS-A3-RT-1030, 823B-ERS-A3-RT-1240, 823B-ERS-A4-RT-1065, 823B-ERS-A5-RT-1115, 823B-ERS-A5-RT-1222, 823B-ERS-A5-RT-1224 | 100% | 2015-08-01 | 2015-08-01 |  |  | finish on or before 2013-03-31 | 823B (7 days - 9 hours) | 823B_AB | H002 | 823B_AB |
| 823B-KD-4G-1° |  | Main Building | milestone | 0d | 2013-03-31 A | 2013-03-31 A | 823B-F-SMB-S-1150, 823B-F-SMB-A-1030, 823B-F-SMB-A-1040, 823B-F-SMB-A-1070, 823B-F-SMB-A-2010, 823B-F-SMB-A-2040, 823B-F-SMB-A-2070, 823B-F-SMB-A-3010, 823B-F-SMB-A-3040, 823B-F-SMB-A-3080, 823B-F-SMB-A-3090, 823B-F-SMB-A-3100, 823B-F-SMB-A-3140, 823B-F-SMB-B-2000, 823B-F-SMB-B-3000 | 100% | 2013-03-28 | 2013-03-28 |  |  | finish on or before 2013-03-31 | 823B (7 days - 9 hours) | 823B_AB | H002 | 823B_AB |
| 823B-KD-4B-1° |  | Area PA1 incl RMS, RS & FBW Steel Portal excl platform slab & portal steel @ LRS, S&C Assembly storage and Loco Shed | milestone | 0d | 2013-05-26 A | 2013-05-26 A | 823B-STR-1030, 823B-H-SLS-A-1010, 823B-H-SLS-A-1040, 823B-H-SLS-A-1060, 823B-RMSA-1010, 823B-H-SLS-A-1030, 823B-H-SLS-A-1090, 823B-H-RSP-1050, 823B-H-RSP-1070, 823B-H-RSP-1100, 823B-H-RSP-1110, 823B-H-RSP-1150, 823B-H-RSP-1190, 823B-E-RMS-1360, 823B-E-RMS-1540, 823B-E-RMS-1720, 823B-E-RMS-1500, 823B-E-RMS-1460, 823B-E-RMS-1420, 823B-E-RMS-1380, 823B-E-RMS-1560, 823B-E-RMS-1600, 823B-E-RMS-1640, 823B-E-RMS-1680, 823B-E-RMS-1180, 823B-RMSA-1140, 823B-RMSA-1110, 823B-RMSA-1120, 823B-RMSA-1050, 823B-RMSA-1060, 823B-H-SLS-B-4000, 823B-H-SLS-B-2000, 823B-E-RMS-B-1000, 823B-E-RMS-B-3000, 823B-E-RMS-B-4000 | 100% | 2013-05-25 | 2013-05-25 |  |  | finish on or before 2013-05-26 | 823B (7 days - 9 hours) | 823B_AB | H002 | 823B_AB |
| 823B-KD-4K-1° |  | Water Pump House (WPH) and Security Operation Centre | milestone | 0d | 2013-05-26 A | 2013-05-26 A | 823B-H-SOC-A-1010, 823B-H-SOC-A-1020, 823B-H-SOC-A-1030, 823B-H-SOC-A-1140, 823B-H-WPH-A-1010, 823B-H-WPH-A-1020, 823B-H-WPH-A-1030, 823B-H-WPH-A-1070, 823B-H-SOC-S-1090, 823B-H-SOC-S-1030, 823B-H-SOC-S-1050, 823B-H-WPH-B-4000, 823B-H-SOC-B-4000 | 100% | 2013-05-25 | 2013-05-25 |  |  | finish on or before 2013-05-26 | 823B (7 days - 9 hours) | 823B_AB | H002 | 823B_AB |
| 823B-KD-4H-3° |  | Shek Kong Feeder Station | milestone | 0d | 2013-06-09 A | 2013-06-09 A | 823B-H-SHK-A-1130, 823B-H-SHK-A-1120 | 100% | 2013-06-08 | 2013-06-08 |  |  | finish on or before 2013-06-09 | 823B (7 days - 9 hours) | 823B_AB | H002 | 823B_AB |
| 823B-KD-4J-2° |  | Infrastructure, Building Maintenance and Pway Buildings (IBP) | milestone | 0d | 2013-07-28 A | 2013-07-28 A | 823B-G-IBP-A-2140, 823B-G-IBP-A-2150, 823B-G-IBP-A-2160, 823B-G-IBP-A-2200, 823B-G-IBP-A-2210, 823B-G-IBP-A-2220, 823B-G-IBP-A-2330, 823B-G-IBP-A-2340, 823B-G-IBP-A-2350 | 100% | 2013-07-27 | 2013-07-27 |  |  | finish on or before 2013-07-28 | 823B (7 days - 9 hours) | 823B_AB | H002 | 823B_AB |
| 823B-KD-4L-1° |  | Dangerous Goods Store, Train Wash Building and Train Wash Plant, and Diesel Filling Station | milestone | 0d | 2013-08-25 A | 2013-08-25 A | 823B-H-DGS-A-1010, 823B-H-DGS-A-1100, 823B-H-DGS-A-1110, 823B-H-DGS-A-1120, 823B-H-DGS-A-1020, 823B-H-DGS-A-1030, 823B-H-DGS-A-1040, 823B-H-TWP-S-1100, 823B-H-TWP-S-1110, 823B-H-TWP-A-1010, 823B-H-TWP-A-1020, 823B-H-TWP-A-1050, 823B-H-TWP-A-1060, 823B-H-TWP-A-1070, 823B-H-TWP-A-1080, 823B-H-DFS-S-1050, 823B-H-TWP-B-2000, 823B-H-DGS-B-2010, 823B-H-DGS-B-2000 | 100% | 2015-08-01 | 2015-08-01 |  |  | finish on or before 2013-08-25 | 823B (7 days - 9 hours) | 823B_AB | H002 | 823B_AB |
| 823B-KD-4E(i) |  | Shek Kong Stabling Siding (SSS) - Area PA3.1 as shown in the Annex 1 of Appendix I of the PS | milestone | 0d | 2013-08-28 A | 2013-08-28 A | 823B-SSS-1030, 823B-STR-1010, 823B-NB10-G-1010 | 100% | 2015-08-01 | 2015-08-01 |  |  | finish on or before 2013-08-11 | 823B (7 days - 9 hours) | 823B_AB | H002 | 823B_AB |
| 823B-KD-4D(i) |  | Shek Kong Stabling Siding (SSS) - Area PA2.1 as shown in the Annex 1 of Appendix I of the PS | milestone | 0d | 2013-08-29 A | 2013-08-29 A | 823B-SSS-1010, 823B-STR-1020 | 100% | 2015-08-01 | 2015-08-01 |  |  | finish on or before 2013-07-28 | 823B (7 days - 9 hours) | 823B_AB | H002 | 823B_AB |
| 823B-KD-4G-2° |  | Main Building | milestone | 0d | 2013-09-01 A | 2013-09-01 A | 823B-F-SMB-A-1010, 823B-F-SMB-A-1050, 823B-F-SMB-A-1090, 823B-F-SMB-A-1110, 823B-F-SMB-A-2020, 823B-F-SMB-A-2050, 823B-F-SMB-A-2090, 823B-F-SMB-A-2110, 823B-F-SMB-A-3020, 823B-F-SMB-A-3050, 823B-F-SMB-A-3060, 823B-F-SMB-A-3110 | 100% | 2013-08-31 | 2013-08-31 |  |  | finish on or before 2013-09-01 | 823B (7 days - 9 hours) | 823B_AB | H002 | 823B_AB |
| 823B-KD-4B-2° |  | Area PA1 incl RMS, RS & FBW Steel Portal excl platform slab & portal steel @ LRS, S&C Assembly storage and Loco Shed | milestone | 0d | 2013-09-29 A | 2013-09-29 A | 823B-H-SLS-A-1020, 823B-RMSA-1150, 823B-RMSA-1200, 823B-RMSA-1220, 823B-RMSA-1250, 823B-RMSA-1020, 823B-H-SLS-A-1050, 823B-H-RSP-1120, 823B-H-RSP-1160, 823B-H-RSP-1200, 823B-RMSA-1080, 823B-RMSA-1090, 823B-RMSA-1040, 823B-RMSA-1030 | 100% | 2013-09-28 | 2013-09-28 |  |  | finish on or before 2013-09-29 | 823B (7 days - 9 hours) | 823B_AB | H002 | 823B_AB |
| 823B-KD-4K-2° |  | Water Pump House (WPH) and Security Operation Centre | milestone | 0d | 2013-09-29 A | 2013-09-29 A | 823B-H-SOC-A-1040, 823B-H-SOC-A-1150, 823B-H-SOC-A-1160, 823B-H-WPH-A-1050, 823B-H-WPH-A-1080 | 100% | 2013-09-28 | 2013-09-28 |  |  | finish on or before 2013-09-29 | 823B (7 days - 9 hours) | 823B_AB | H002 | 823B_AB |
| 823B-KD-4E(ii) |  | Shek Kong Stabling Siding (SSS) - Area PA3.2 as shown in the Annex 1 of Appendix I of the PS | milestone | 0d | 2014-01-04 A | 2014-01-04 A | 823B-SSS-1040, 823B-NB10-G-1020, 823B-NB10-Z01-1120, 823B-NB10-Z02-1120, 823B-NB10-Z03-1120, 823B-NB10-Z04-1120, 823B-NB10-Z05-1110, 823B-NB10-Z06-1090, 823B-NB10-Z07-1090, 823B-NB10-Z08-1080, 823B-NB10-Z09-1090, 823B-NB10-Z12-1080, 823B-NB10-Z11-1090, 823B-NB10-Z10-1090 | 100% | 2015-08-01 | 2015-08-01 |  |  | finish on or before 2013-11-17 | 823B (7 days - 9 hours) | 823B_AB | H002 | 823B_AB |
| 823B-KD-4A(iii) |  | Emergency Rescue Siding (ERS) Running Tunnels Area 6-11, including backfilling | milestone | 0d | 2014-01-06 A | 2014-01-06 A | 823B-CC-A11-RT-1260, 823B-CC-A11-RT-1200, 823B-CC-A11-RT-1150, 823B-CC-A11-RT-1100, 823B-CC-A11-RT-1050, 823B-CC-A10-RT-1270, 823B-CC-A10-RT-1210, 823B-CC-A10-RT-1150, 823B-CC-A10-RT-1090, 823B-CC-A10-RT-1030, 823B-CC-A9-RT-1280, 823B-CC-A9-RT-1220, 823B-CC-A9-RT-1150, 823B-CC-A9-RT-1090, 823B-CC-A9-RT-1030, 823B-CC-A7-RT-1360, 823B-CC-A7-RT-1290, 823B-CC-A7-RT-1230, 823B-ERS-A6-RT-1680, 823B-ERS-A6-RT-1620, 823B-ERS-A6-RT-1560, 823B-ERS-A6-RT-1500, 823B-ERS-A6-RT-1440, 823B-ERS-A6-RT-1260, 823B-ERS-A6-RT-1200, 823B-ERS-A6-RT-1130, 823B-ERS-A6-RT-1060, 823B-ERS-A6-RT-1050, 823B-CC-A7-RT-1090, 823B-CC-A7-RT-1150, 823B-CC-A7-RT-1020, 823B-CC-A10-RT-1096, 823B-CC-A7-RT-1236, 823B-ERS-A6-RT-1350, 823B-ERS-A6-RT-1065, 823B-ERS-A6-RT-1282, 823B-ERS-A6-RT-1284, 823B-ERS-A6-RT-1384, 823B-ERS-A6-RT-1504, 823B-ERS-A6-RT-1684, 823B-CC-A7-RT-1322, 823B-CC-A7-RT-1321, 823B-CC-A7-RT-1401, 823B-CC-A7-RT-1402, 823B-CC-A9-RT-1320, 823B-CC-A9-RT-1330, 823B-CC-A10-RT-1310, 823B-CC-A10-RT-1320, 823B-CC-A9-RT-1181, 823B-CC-A9-RT-1182, 823B-CC-A10-RT-1241, 823B-CC-A10-RT-1242, 823B-CC-A11-RT-1300, 823B-CC-A11-RT-1310, 823B-CC-A11-RT-1232, 823B-CC-A11-RT-1233, 823B-CC-A7-RT-1024, 823B-CC-A7-RT-1026 | 100% | 2015-08-01 | 2015-08-01 |  |  | finish on or before 2013-08-04 | 823B (7 days - 9 hours) | 823B_AB | H002 | 823B_AB |
| 823B-KD-4A(i) |  | Emergency Rescue Siding (ERS) Running Tunnels Area 1-2, including backfilling | milestone | 0d | 2014-01-27 A | 2014-01-27 A | 823B-ERS-A1-RT-1030, 823B-ERS-A1-RT-1110, 823B-ERS-A1-RT-1200, 823B-ERS-A1-RT-1070, 823B-ERS-A2-RT-1040, 823B-ERS-A2-RT-1080, 823B-ERS-A2-RT-1200, 823B-ERS-A2-RT-2040, 823B-ERS-A2-RT-2090, 823B-ERS-A3-RT-1020, 823B-ERS-A1-RT-1140, 823B-ERS-A1-RT-1180, 823B-ERS-A2-RT-1230, 823B-ERS-A2-RT-2080, 823B-ERS-A2-RT-1260, 823B-ERS-A2-RT-3030, 823B-ERS-A2-RT-3060, 823B-ERS-A2-RT-3090, 823B-ERS-A2-RT-3120, 823B-ERS-A1-RT-1150, 823B-ERS-A1-RT-1190, 823B-ERS-A2-RT-1265, 823B-ERS-A1-RT-1210, 823B-ERS-A1-RT-1220, 823B-ERS-A2-RT-1095, 823B-ERS-A2-RT-1225, 823B-ERS-A2-RT-1267, 823B-ERS-A2-RT-2085, 823B-ERS-A2-RT-3115, 823B-ERS-A2-RT-1226 | 100% | 2015-08-01 | 2015-08-01 |  |  | finish on or before 2013-08-04 | 823B (7 days - 9 hours) | 823B_AB | H002 | 823B_AB |
| 823B-KD-4D(ii) |  | Shek Kong Stabling Siding (SSS) - Area PA2.2 and Works Area 4.19E as shown in the Annex 1 of Appendix I of the PS | milestone | 0d | 2014-03-19 A | 2014-03-19 A | 823B-SSS-1020, 823B-CC-A7-RT-1030, 823B-NB12-G-1070, 823B-NB12-Z01-1040 | 100% | 2015-08-01 | 2015-08-01 |  |  | finish on or before 2013-09-01 | 823B (7 days - 9 hours) | 823B_AB | H002 | 823B_AB |
| 823B-KD-4C |  | Complete Approach Tunnel and the shunt neck, including backfilling | milestone | 0d | 2014-05-31 A | 2014-05-31 A | 823B-CC-A11-RT-1290, 823B-CC-A11-RT-1230, 823B-CC-A11-RT-1170, 823B-CC-A11-RT-1120, 823B-CC-A11-RT-1070, 823B-CC-A10-RT-1300, 823B-CC-A10-RT-1240, 823B-CC-A10-RT-1180, 823B-CC-A10-RT-1120, 823B-CC-A10-RT-1060, 823B-CC-A9-RT-1310, 823B-CC-A9-RT-1250, 823B-CC-A9-RT-1180, 823B-CC-A9-RT-1120, 823B-CC-A9-RT-1060, 823B-CC-A7-RT-1390, 823B-CC-A7-RT-1400, 823B-CC-A7-RT-1320, 823B-CC-A7-RT-1260, 823B-CC-A7-RT-1200, 823B-CC-A7-RT-1190, 823B-CC-A7-RT-1110, 823B-CC-A7-RT-1324, 823B-CC-A7-RT-1325, 823B-CC-A7-RT-1327, 823B-CC-A7-RT-1328, 823B-CC-A7-RT-1404, 823B-CC-A7-RT-1405, 823B-CC-A9-RT-1340, 823B-CC-A9-RT-1350, 823B-CC-A10-RT-1330, 823B-CC-A10-RT-1340, 823B-CC-A9-RT-1184, 823B-CC-A9-RT-1186, 823B-CC-A10-RT-1243, 823B-CC-A10-RT-1244, 823B-CC-A10-RT-1245, 823B-CC-A10-RT-1246, 823B-CC-A11-RT-1320, 823B-CC-A11-RT-1330, 823B-CC-A11-RT-1236, 823B-CC-A11-RT-1235 | 100% | 2014-11-04 | 2014-11-04 |  |  | finish on or before 2013-10-06 | 823B (7 days - 9 hours) | 823B_AB | H002 | 823B_AB |
| 823B-KD-4F-1° |  | ERS Plant Buildings | milestone | 0d | 2014-08-26 A | 2014-08-26 A | 823B-ERS-A6-PBS-2000, 823B-ERS-A2-RT-1270, 823B-ERS-A2-PBN-2000, 823B-ERS-A2-PBN-1100, 823B-ERS-A6-PBS-1050 | 100% | 2015-08-01 | 2015-08-01 |  |  | finish on or before 2013-11-17 | 823B (7 days - 9 hours) | 823B_AB | H002 | 823B_AB |
| 823B-KD-4G-3° |  | Main Building | milestone | 0d | 2014-11-13 A | 2014-11-13 A | 823B-F-SMB-A-1020, 823B-F-SMB-A-1060, 823B-F-SMB-A-1080, 823B-F-SMB-A-1100, 823B-F-SMB-A-1120, 823B-F-SMB-A-1130, 823B-F-SMB-A-1140, 823B-F-SMB-A-2030, 823B-F-SMB-A-2060, 823B-F-SMB-A-2080, 823B-F-SMB-A-2100, 823B-F-SMB-A-2120, 823B-F-SMB-A-2130, 823B-F-SMB-A-2140, 823B-F-SMB-A-3030, 823B-F-SMB-A-3070, 823B-F-SMB-A-3120, 823B-F-SMB-A-3130, 823B-F-SMB-A-3150 | 100% | 2015-05-01 | 2015-05-01 |  |  | finish on or before 2013-12-01 | 823B (7 days - 9 hours) | 823B_AB | H002 | 823B_AB |
| 823B-KD-4J-3° |  | Infrastructure, Building Maintenance and Pway Buildings (IBP) | milestone | 0d | 2015-02-10 A | 2015-02-10 A | 823B-G-IBP-A-2080, 823B-G-IBP-A-2090, 823B-G-IBP-A-2100, 823B-G-IBP-A-2170, 823B-G-IBP-A-2180, 823B-G-IBP-A-2190, 823B-G-IBP-A-2230, 823B-G-IBP-A-2240, 823B-G-IBP-A-2250, 823B-G-IBP-A-2270, 823B-G-IBP-A-2280, 823B-G-IBP-A-2290, 823B-G-IBP-A-2300, 823B-G-IBP-A-2310, 823B-G-IBP-A-2320, 823B-G-IBP-A-2360, 823B-G-IBP-A-2370, 823B-G-IBP-A-2380, 823B-G-IBP-A-2390, 823B-G-IBP-A-2400, 823B-G-IBP-A-2410, 823B-G-IBP-A-2420, 823B-G-IBP-A-2430, 823B-G-IBP-A-2440, 823B-G-IBP-A-2450, 823B-G-IBP-A-2460, 823B-G-IBP-A-2470, 823B-G-IBP-A-2480, 823B-G-IBP-A-2490, 823B-G-IBP-A-2500 | 100% | 2016-06-01 | 2016-06-01 |  |  | finish on or before 2013-10-27 | 823B (7 days - 9 hours) | 823B_AB | H002 | 823B_AB |
| 823B-KD-4K-3° |  | Water Pump House (WPH) and Security Operation Centre | milestone | 0d | 2015-02-10 A | 2015-02-10 A | 823B-H-SOC-A-1050, 823B-H-SOC-A-1060, 823B-H-SOC-A-1070, 823B-H-SOC-A-1080, 823B-H-SOC-A-1090, 823B-H-SOC-A-1100, 823B-H-SOC-A-1110, 823B-H-SOC-A-1120, 823B-H-SOC-A-1130, 823B-H-WPH-A-1040, 823B-H-WPH-A-1060, 823B-H-SOC-S-1050, 823B-H-SOC-S-1040 | 100% | 2015-08-01 | 2015-08-01 |  |  | finish on or before 2014-03-02 | 823B (7 days - 9 hours) | 823B_AB | H002 | 823B_AB |
| 823B-KD-4L-2° |  | Dangerous Goods Store, Train Wash Building and Train Wash Plant, and Diesel Filling Station | milestone | 0d | 2015-02-26 A | 2015-02-26 A | 823B-H-DGS-A-1060, 823B-H-DFS-S-1080 | 100% | 2015-08-01 | 2015-08-01 |  |  | finish on or before 2013-12-01 | 823B (7 days - 9 hours) | 823B_AB | H002 | 823B_AB |
| 823B-KD-4B-3° |  | Area PA1 incl RMS, RS & FBW Steel Portal excl platform slab & portal steel @ LRS, S&C Assembly storage and Loco Shed | milestone | 0d | 2015-03-10 A | 2015-03-10 A | 823B-H-SLS-A-1080, 823B-H-SLS-A-1100, 823B-RMSA-1130, 823B-RMSA-1160, 823B-RMSA-1170, 823B-RMSA-1180, 823B-RMSA-1210, 823B-RMSA-1230, 823B-RMSA-1240, 823B-RMSA-1260, 823B-RMSA-1270, 823B-RMSA-1280, 823B-RMSA-1100, 823B-RMSA-1070, 823B-RMSA-1190, 823B-H-SLS-A-1070, 823B-H-SLS-A-1110, 823B-H-SLS-A-1120, 823B-H-SLS-A-1130, 823B-H-SLS-A-1140, 823B-H-RSP-2010 | 100% | 2016-06-01 | 2016-06-01 |  |  | finish on or before 2014-02-23 | 823B (7 days - 9 hours) | 823B_AB | H002 | 823B_AB |
| 823B-KD-4F-2° |  | ERS Plant Buildings | milestone | 0d | 2015-10-26 A | 2015-10-26 A | 823B-ERS-A6-PBS-3000, 823B-ERS-A2-PBN-3000 | 100% | 2015-08-01 | 2015-08-01 |  |  | finish on or before 2014-03-16 | 823B (7 days - 9 hours) | 823B_AB | H002 | 823B_AB |
| 823B-KD-4L-3° |  | Dangerous Goods Store, Train Wash Building and Train Wash Plant, and Diesel Filling Station | milestone | 0d | 2015-11-12 A | 2015-11-12 A | 823B-H-DGS-A-1050, 823B-H-DGS-A-1070, 823B-H-DGS-A-1080, 823B-H-DGS-A-1090, 823B-H-DFS-A-2010, 823B-H-TWP-A-1030, 823B-H-TWP-A-1040, 823B-H-TWP-A-1090, 823B-H-DFS-S-1060, 823B-H-DFS-S-1070 | 100% | 2015-08-01 | 2015-08-01 |  |  | finish on or before 2014-03-02 | 823B (7 days - 9 hours) | 823B_AB | H002 | 823B_AB |
| 823B-KD-4F-3° |  | ERS Plant Buildings | milestone | 0d | 2016-04-28 A | 2016-04-28 A | 823B-ERS-A6-PBS-4000, 823B-ERS-A2-PBN-4000 | 100% | 2016-06-01 | 2016-06-01 |  |  | finish on or before 2014-05-18 | 823B (7 days - 9 hours) | 823B_AB | H002 | 823B_AB |

| ID | WBS | Activity | Type | Duration | Start | Finish | Predecessors | Complete | Planned start | Planned finish | Total float | Free float | Constraint | Calendar |
| --- | --- | --- | --- | --- | --- | --- | --- | --- | --- | --- | --- | --- | --- | --- |
|  | 5 | **MILESTONE SCHEDULE** |  |  | 2010-12-12 | 2017-02-11 |  |  |  |  |  |  |  |  |
|  | 01 | **Cost Center A - Preliminaries** |  |  | 2011-01-30 | 2017-02-11 |  |  |  |  |  |  |  |  |
| 823B-MS-A01 |  | Approval of Contractor's Submission (Prel Master Prog, TimeChainage Prog, EMP, QP, Method of Const, Submission Schedule) | milestone | 0d | 2011-01-30 A | 2011-01-30 A | 823B-A-PWS-0140, 823B-A-SPM-0020, 823B-A-SPM-0040, 823B-A-PMS-0020, 823B-A-PMS-0040, 823B-A-GNS-0020, 823B-A-GNS-0040, 823B-A-GNS-0070, 823B-A-GNS-0090 | 100% |  |  |  |  | finish on or before 2011-01-30 | 823B (7 days - 9 hours) |
| 823B-MS-A02-1 |  | Prepare and submit Contamination Assessment Report (CAR) & Remediation Action Plan (RAP) for Works Areas 4.20A | milestone | 0d | 2011-02-27 A | 2011-02-27 A | 823B-A-PWS-0640, 823B-A-PWS-0740, 823B-A-PWS-0840 | 100% |  |  |  |  | finish on or before 2011-02-27 | 823B (7 days - 9 hours) |
| 823B-MS-A02-2 |  | Engineer's confirmation of satisfactory implementation of Specified Plans¹ | milestone | 0d | 2011-02-27 A | 2011-02-27 A | 823B-A-SPM-0050 | 100% |  |  |  |  | finish on or before 2011-02-27 | 823B (7 days - 9 hours) |
| 823B-MS-A04 |  | Engineer's confirmation of satisfactory implementation of Specified Plans and Programming Management System¹ | milestone | 0d | 2011-08-28 A | 2011-08-28 A | 823B-A-SPM-0060, 823B-A-PMS-0050 | 100% |  |  |  |  | finish on or before 2011-08-28 | 823B (7 days - 9 hours) |
| 823B-MS-A03-1 |  | Complete 50% of temporary diaphragm wall of the Running Tunnel | milestone | 0d | 2011-12-31 A | 2011-12-31 A | 823B-CC-A7-DW-1010, 823B-CC-A9-DW-1010, 823B-CC-A10-DW-1010, 823B-CC-A11-DW-1010 | 100% |  |  |  |  | finish on or before 2011-12-31 | 823B (7 days - 9 hours) |
| 823B-MS-A03-2 |  | Complete the Engineer's office and provide office furniture and equipment | milestone | 0d | 2011-12-31 A | 2011-12-31 A | 823B-A-PSA-0040, 823B-A-PSA-0060 | 100% |  |  |  |  | finish on or before 2011-12-31 | 823B (7 days - 9 hours) |
| 823B-MS-A05 |  | Approval of detailed Interface Requirements Specifications with all the Designated Contractors (Appendix W of the PS) | milestone | 0d | 2011-12-31 A | 2011-12-31 A | 823B-A-DIS-0020 | 100% |  |  |  |  | finish on or before 2011-12-31 | 823B (7 days - 9 hours) |
| 823B-MS-A06 |  | Engineer's confirmation of satisfactory implementation of Specified Plans¹ | milestone | 0d | 2012-02-26 A | 2012-02-26 A | 823B-A-SPM-0070 | 100% |  |  |  |  | finish on or before 2012-02-26 | 823B (7 days - 9 hours) |
| 823B-MS-A07 |  | Engineer's confirmation of satisfactory implementation of Specified Plans and Programming Management System¹ | milestone | 0d | 2012-08-21 A | 2012-08-21 A | 823B-A-SPM-0080, 823B-A-PMS-0060 | 100% |  |  |  |  | finish on or before 2012-08-26 | 823B (7 days - 9 hours) |
| 823B-MS-A08 |  | Approval of detailed Interface Requirements Specifications with the Designated Contractors (Appendix W of the PS) | milestone | 0d | 2012-12-30 A | 2012-12-30 A | 823B-A-DIS-0040 | 100% | 2012-12-28 | 2012-12-28 |  |  | finish on or before 2012-12-30 | 823B (7 days - 9 hours) |
| 823B-MS-A09-1 |  | Complete East Culvert and associated drainage connections | milestone | 0d | 2013-03-23 A | 2013-03-23 A | 823B-EBC-1580, 823B-EBC-1570, 823B-EBC-1520, 823B-EBC-1020, 823B-EBC-1040, 823B-EBC-1100, 823B-EBC-1140, 823B-EBC-1170, 823B-EBC-1210, 823B-EBC-1240, 823B-EBC-1260, 823B-EBC-1290, 823B-EBC-1310, 823B-EBC-1330, 823B-EBC-1380, 823B-EBC-1410, 823B-EBC-1435 | 100% | 2013-03-24 | 2013-03-24 |  |  | finish on 2013-03-24 | 823B (7 days - 9 hours) |
| 823B-MS-A09-2 |  | Engineer's confirmation of satisfactory implementation of Specified Plans¹ | milestone | 0d | 2013-03-23 A | 2013-03-23 A | 823B-A-SPM-0090 | 100% |  |  |  |  | finish on or before 2013-03-24 | 823B (7 days - 9 hours) |
| 823B-MS-A11 |  | Engineer's confirmation of satisfactory implementation of Specified Plans and Programming Management System¹ | milestone | 0d | 2013-08-31 A | 2013-08-31 A | 823B-A-SPM-0100, 823B-A-PMS-0070 | 100% | 2013-08-24 | 2013-08-24 |  |  | finish on or before 2013-08-25 | 823B (7 days - 9 hours) |
| 823B-MS-A12 |  | Complete all works for the Shek Kong Feeder Station necessary for statutory inspections | milestone | 0d | 2014-01-25 A | 2014-01-25 A | 823B-H-SHK-A-1130, 823B-H-SHK-Z2-1330, 823B-RDW-1025 | 100% | 2015-12-01 | 2015-12-01 |  |  | finish on or before 2014-01-26 | 823B (7 days - 9 hours) |
| 823B-MS-A13 |  | Engineer's confirmation of satisfactory implementation of Specified Plans¹ | milestone | 0d | 2014-03-30 A | 2014-03-30 A | 823B-A-SPM-0110 | 100% | 2014-03-31 | 2014-03-31 |  |  | finish on or before 2014-03-30 | 823B (7 days - 9 hours) |
| 823B-MS-A14 |  | Approval of draft Operating and Maintenance Manuals and draft as-built drawings for Whole of the Works | milestone | 0d | 2015-06-30 A | 2015-06-30 A | 823B-A-OMM-0020 | 100% | 2015-07-15 | 2015-07-15 |  |  | finish on or before 2014-08-10 | 823B (7 days - 9 hours) |
| 823B-MS-A10 |  | Complete ERS Running Tunnel Structure in Area 1-2 | milestone | 0d | 2016-07-01 A | 2016-07-01 A | 823B-ERS-A1-RT-1020, 823B-ERS-A1-RT-1050, 823B-ERS-A1-RT-1090, 823B-ERS-A1-RT-1130, 823B-ERS-A1-RT-1170, 823B-ERS-A2-RT-1020, 823B-ERS-A2-RT-1060, 823B-ERS-A2-RT-1210, 823B-ERS-A2-RT-1220, 823B-ERS-A2-RT-1250, 823B-ERS-A2-RT-2020, 823B-ERS-A2-RT-2060 | 100% |  |  |  |  | finish on or before 2013-08-25 | 823B (7 days - 9 hours) |
| 823B-MS-A15 |  | Approval of Operating and Maintenance Manuals and as-built drawings for the Whole of the Woks | milestone | 0d | 2017-02-11 | 2017-02-11 | 823B-A-OMM-0040, 823B-A-OMM-0060 |  |  |  | -734d | 6d | finish on or before 2015-02-08 | 823B (7 days - 9 hours) |
|  | 02 | **Cost Center B - Site Clearance & Instrumentation** |  |  | 2011-03-27 | 2015-04-30 |  |  |  |  |  |  |  |  |
| 823B-MS-B01 |  | Complete demolition of existing buildings or structures within Works Areas 4.18B~D, 4.19D, 4.23A~D and 4.23E | milestone | 0d | 2011-03-27 A | 2011-03-27 A | 823B-B-DSC-0020, 823B-B-DSC-0030 | 100% |  |  |  |  | finish on or before 2011-03-27 | 823B (7 days - 9 hours) |
| 823B-MS-B02 |  | Complete all remediation measures on the contaminated areas | milestone | 0d | 2011-07-30 A | 2011-07-30 A | 823B-A-PWS-0670, 823B-A-PWS-0770, 823B-A-PWS-0870 | 100% |  |  |  |  | finish on or before 2011-07-30 | 823B (7 days - 9 hours) |
| 823B-MS-B03 |  | Complete installation of all ground settlement points and vertical inclinometer (excl vertical inclinometer for d-walls) | milestone | 0d | 2011-10-30 A | 2011-10-30 A | 823B-B-IAM-0030, 823B-B-IAM-0060, 823B-B-IAM-0090, 823B-B-IAM-0010, 823B-B-IAM-0040, 823B-B-IAM-0070 | 100% |  |  |  |  | finish on or before 2011-10-30 | 823B (7 days - 9 hours) |
| 823B-MS-B04 |  | Submit instrumentation monitoring report | milestone | 0d | 2012-04-22 A | 2012-04-22 A | 823B-B-IAM-0100 | 100% |  |  |  |  | finish on or before 2012-04-22 | 823B (7 days - 9 hours) |
| 823B-MS-B05 |  | Submit instrumentation monitoring report / Complete installation of vertical inclinometer for d-walls | milestone | 0d | 2012-11-12 A | 2012-11-12 A | 823B-B-IAM-0110 | 100% |  |  |  |  | finish on 2012-11-12 | 823B (7 days - 9 hours) |
| 823B-MS-B06 |  | Submit instrumentation monitoring report | milestone | 0d | 2013-04-30 A | 2013-04-30 A | 823B-B-IAM-0120 | 100% | 2013-04-27 | 2013-04-27 |  |  | finish on or before 2013-04-28 | 823B (7 days - 9 hours) |
| 823B-MS-B07 |  | Submit instrumentation monitoring report | milestone | 0d | 2013-10-31 A | 2013-10-31 A | 823B-B-IAM-0130 | 100% | 2013-10-26 | 2013-10-26 |  |  | finish on or before 2013-10-27 | 823B (7 days - 9 hours) |
| 823B-MS-B08 |  | Submit instrumentation monitoring report | milestone | 0d | 2014-04-27 A | 2014-04-27 A | 823B-B-IAM-0140 | 100% | 2014-08-30 | 2014-08-30 |  |  | finish on or before 2014-04-27 | 823B (7 days - 9 hours) |
| 823B-MS-B09 |  | Submit instrumentation monitoring report | milestone | 0d | 2014-10-26 A | 2014-10-26 A | 823B-B-IAM-0150 | 100% | 2014-10-25 | 2014-10-25 |  |  | finish on or before 2014-10-26 | 823B (7 days - 9 hours) |
| 823B-MS-B10 |  | Submit instrumentation monitoring report | milestone | 0d | 2015-04-30 A | 2015-04-30 A | 823B-B-IAM-0160 | 100% | 2015-04-25 | 2015-04-25 |  |  | finish on or before 2015-04-26 | 823B (7 days - 9 hours) |

| ID | WBS | Activity | Type | Duration | Start | Finish | Predecessors | Complete | Planned start | Planned finish | Constraint | Calendar |
| --- | --- | --- | --- | --- | --- | --- | --- | --- | --- | --- | --- | --- |
|  | 03 | **Cost Center C - Emergency Rescue Siding (ERS)** |  |  | 2011-07-30 | 2015-11-30 |  |  |  |  |  |  |
| 823B-MS-C01 |  | Complete 2% of the permanent diaphragm wall | milestone | 0d | 2011-07-30 A | 2011-07-30 A | 823B-ERS-A4-DW-1010 | 100% |  |  | finish on 2011-07-30 | 823B (7 days - 9 hours) |
| 823B-MS-C02 |  | Complete 20% of the permanent diaphragm wall | milestone | 0d | 2011-10-23 A | 2011-10-23 A | 823B-ERS-A4-DW-1010, 823B-ERS-A2-DW-1010 | 100% |  |  | finish on 2011-10-23 | 823B (7 days - 9 hours) |
| 823B-MS-C03 |  | Complete 50% of socketed steel H-piles | milestone | 0d | 2012-03-31 A | 2012-03-31 A | 823B-ERS-A3-DW-1010, 823B-ERS-A2-DW-1010 | 100% |  |  | finish on 2012-03-31 | 823B (7 days - 9 hours) |
| 823B-MS-C04 |  | Complete 90% of the permanent diaphragm wall | milestone | 0d | 2012-04-30 A | 2012-04-30 A | 823B-ERS-A2-DW-1010, 823B-ERS-A3-DW-1010, 823B-ERS-A4-DW-1010, 823B-ERS-A5-DW-1010, 823B-ERS-A6-DW-1010 | 100% | 2012-04-29 | 2012-04-29 | finish on 2012-04-29 | 823B (7 days - 9 hours) |
| 823B-MS-C05 |  | Complete 20% of the excavation for the cut and cover tunnels | milestone | 0d | 2012-09-29 A | 2012-09-29 A | 823B-ERS-A3-ELS-1010, 823B-ERS-A4-ELS-1010 | 100% | 2012-09-30 | 2012-09-30 | finish on 2012-09-30 | 823B (7 days - 9 hours) |
| 823B-MS-C06 |  | Complete 70% of the excavation for the cut and cover tunnels | milestone | 0d | 2013-01-31 A | 2013-01-31 A | 823B-ERS-A1-ELS-1050, 823B-ERS-A2-ELS-1060, 823B-ERS-A2-ELS-2060, 823B-ERS-A2-ELS-3040, 823B-ERS-A3-ELS-1110, 823B-ERS-A4-ELS-1100, 823B-ERS-A5-ELS-1180, 823B-ERS-A6-ELS-1140, 823B-ERS-A6-ELS-1360 | 100% | 2013-02-18 | 2013-02-18 | finish on or before 2013-03-18 | 823B (7 days - 9 hours) |
| 823B-MS-C07 |  | Complete 50% of the cut and cover tunnels | milestone | 0d | 2013-06-30 A | 2013-06-30 A | 823B-ERS-A3-RT-1080, 823B-ERS-A3-RT-1110, 823B-ERS-A3-RT-1170, 823B-ERS-A3-RT-1200, 823B-ERS-A4-RT-1060, 823B-ERS-A4-RT-1030, 823B-ERS-A4-RT-1180, 823B-ERS-A4-RT-1120, 823B-ERS-A5-RT-1110, 823B-ERS-A5-RT-1080, 823B-ERS-A5-RT-1030, 823B-ERS-A5-RT-1220, 823B-ERS-A5-RT-1190, 823B-ERS-A5-RT-1160, 823B-ERS-A6-RT-1060, 823B-ERS-A2-RT-2080 | 100% | 2013-07-26 | 2013-07-26 | finish on or before 2013-08-25 | 823B (7 days - 9 hours) |
| 823B-MS-C08 |  | Complete 80% of the cut and cover tunnels | milestone | 0d | 2013-10-31 A | 2013-10-31 A | 823B-ERS-A1-RT-1030, 823B-ERS-A1-RT-1190, 823B-ERS-A1-RT-1110, 823B-ERS-A1-RT-1070, 823B-ERS-A2-RT-1080, 823B-ERS-A2-RT-1040, 823B-ERS-A6-RT-1150, 823B-ERS-A6-RT-1220, 823B-ERS-A6-RT-1350, 823B-ERS-A6-RT-1440, 823B-ERS-A6-RT-1500, 823B-ERS-A6-RT-1620, 823B-ERS-A6-RT-1560 | 100% | 2013-08-03 | 2013-08-03 | finish on or before 2013-09-22 | 823B (7 days - 9 hours) |
| 823B-MS-C09 |  | Complete tunnel walkway and installation of cable brackets supplied by Contract 846 | milestone | 0d | 2013-12-31 A | 2013-12-31 A | 823B-ERS-A1-RT-1200, 823B-ERS-A2-RT-1090, 823B-ERS-A2-RT-2090, 823B-ERS-A2-RT-3120, 823B-ERS-A3-RT-1210, 823B-ERS-A4-RT-1070, 823B-ERS-A4-RT-1130, 823B-ERS-A4-RT-1170, 823B-ERS-A5-RT-1120, 823B-ERS-A5-RT-1040, 823B-ERS-A5-RT-1230, 823B-ERS-A6-RT-1050, 823B-ERS-A1-RT-1210, 823B-ERS-A1-RT-1220, 823B-ERS-A2-RT-1095, 823B-ERS-A2-RT-1225, 823B-ERS-A2-RT-1265, 823B-ERS-A2-RT-1267, 823B-ERS-A2-RT-2090 FF, 823B-ERS-A2-RT-3115, 823B-ERS-A3-RT-1240, 823B-ERS-A4-RT-1065, 823B-ERS-A5-RT-1115, 823B-ERS-A5-RT-1222, 823B-ERS-A5-RT-1224, 823B-ERS-A6-RT-1065, 823B-ERS-A6-RT-1282, 823B-ERS-A6-RT-1284, 823B-ERS-A6-RT-1384, 823B-ERS-A6-RT-1504, 823B-ERS-A6-RT-1684, 823B-ERS-A2-RT-1226 | 100% | 2013-08-03 | 2013-08-03 | finish on or before 2013-09-29 | 823B (7 days - 9 hours) |
| 823B-MS-C11 |  | Complete external watermains works and ducts and connect to the ERS Plant Buildings | milestone | 0d | 2014-10-31 A | 2014-10-31 A | 823B-RDW-1030, 823B-RDW-1035 | 100% | 2014-12-31 | 2014-12-31 | finish on or before 2014-04-27 | 823B (7 days - 9 hours) |
| 823B-MS-C10 |  | Complete all rooms within ERS Plant Building to Degree 1 | milestone | 0d | 2014-11-30 A | 2014-11-30 A | 823B-ERS-A2-PBN-1100, 823B-ERS-A2-PBN-2000, 823B-ERS-A6-PBS-1050, 823B-ERS-A6-PBS-2000 | 100% | 2014-12-13 | 2014-12-13 | finish on or before 2013-11-24 | 823B (7 days - 9 hours) |
| 823B-MS-C12 |  | All works complete necessary for statutory inspections | milestone | 0d | 2015-11-30 A | 2015-11-30 A | 823B-RDW-1055 | 100% | 2015-12-01 | 2015-12-01 | finish on or before 2014-09-28 | 823B (7 days - 9 hours) |
|  | 04 | **Cost Center D - Running Tunnel and Approach Tunnel** |  |  | 2011-08-06 | 2014-03-30 |  |  |  |  |  |  |
| 823B-MS-D01 |  | Complete 5% of temporary diaphragm wall | milestone | 0d | 2011-08-06 A | 2011-08-06 A |  | 100% |  |  | finish on 2011-08-06 | 823B (7 days - 9 hours) |
| 823B-MS-D02 |  | Complete 50% of temporary diaphragm wall | milestone | 0d | 2011-12-31 A | 2011-12-31 A |  | 100% |  |  | finish on 2011-12-31 | 823B (7 days - 9 hours) |
| 823B-MS-D03 |  | Complete 80% of temporary diaphragm wall | milestone | 0d | 2012-07-04 A | 2012-07-04 A |  | 100% |  |  | finish on 2012-07-04 | 823B (7 days - 9 hours) |
| 823B-MS-D04 |  | Complete 30% of excavation | milestone | 0d | 2012-10-31 A | 2012-10-31 A | 823B-CC-A7-ELS-1020, 823B-CC-A9-ELS-1040, 823B-CC-A10-ELS-1020 | 100% |  |  | finish on 2012-10-31 | 823B (7 days - 9 hours) |
| 823B-MS-D05 |  | Complete 80% of excavation | milestone | 0d | 2013-02-28 A | 2013-02-28 A | 823B-CC-A11-ELS-1070, 823B-CC-A10-ELS-1060, 823B-CC-A9-ELS-1080, 823B-CC-A7-ELS-1070 | 100% | 2013-03-02 | 2013-03-02 | finish on or before 2013-03-17 | 823B (7 days - 9 hours) |
| 823B-MS-D06 |  | Complete 50% of the Running Tunnels | milestone | 0d | 2013-07-31 A | 2013-07-31 A | 823B-CC-A7-RT-1060, 823B-CC-A7-RT-1230, 823B-CC-A7-RT-1360, 823B-CC-A9-RT-1150, 823B-CC-A10-RT-1210, 823B-CC-A10-RT-1150, 823B-CC-A10-RT-1030, 823B-CC-A11-RT-1200, 823B-CC-A11-RT-1100, 823B-CC-A11-RT-1050 | 100% | 2013-06-01 | 2013-06-01 | finish on or before 2013-06-30 | 823B (7 days - 9 hours) |
| 823B-MS-D07 |  | Complete 90% of the Running Tunnels | milestone | 0d | 2013-10-31 A | 2013-10-31 A | 823B-CC-A7-RT-1060, 823B-CC-A7-RT-1140, 823B-CC-A7-RT-1230, 823B-CC-A7-RT-1290, 823B-CC-A7-RT-1360, 823B-CC-A9-RT-1280, 823B-CC-A9-RT-1220, 823B-CC-A9-RT-1150, 823B-CC-A9-RT-1090, 823B-CC-A9-RT-1030, 823B-CC-A10-RT-1270, 823B-CC-A10-RT-1210, 823B-CC-A10-RT-1150, 823B-CC-A10-RT-1090, 823B-CC-A10-RT-1030, 823B-CC-A11-RT-1260, 823B-CC-A11-RT-1200, 823B-CC-A11-RT-1100, 823B-CC-A11-RT-1050 | 100% | 2013-06-17 | 2013-06-17 | finish on or before 2013-07-14 | 823B (7 days - 9 hours) |
| 823B-MS-D08 |  | Complete 40% of the Approach Tunnel | milestone | 0d | 2013-11-24 A | 2013-11-24 A | 823B-CC-A7-RT-1110, 823B-CC-A7-RT-1260, 823B-CC-A7-RT-1390, 823B-CC-A9-RT-1180, 823B-CC-A9-RT-1060, 823B-CC-A10-RT-1240, 823B-CC-A10-RT-1180, 823B-CC-A10-RT-1060, 823B-CC-A11-RT-1230 | 100% | 2013-10-05 | 2013-10-05 | finish on or before 2013-11-03 | 823B (7 days - 9 hours) |
| 823B-MS-D09-1 |  | Complete tunnel walkway and installation of cable brackets supplied by Contract 846 for the Running Tunnels | milestone | 0d | 2014-01-25 A | 2014-01-25 A | 823B-CC-A7-RT-1300, 823B-CC-A9-RT-1230, 823B-CC-A7-RT-1322, 823B-CC-A7-RT-1321, 823B-CC-A7-RT-1401, 823B-CC-A7-RT-1402, 823B-CC-A9-RT-1320, 823B-CC-A9-RT-1330, 823B-CC-A10-RT-1310, 823B-CC-A10-RT-1320, 823B-CC-A9-RT-1181, 823B-CC-A9-RT-1182, 823B-CC-A10-RT-1241, 823B-CC-A10-RT-1242, 823B-CC-A11-RT-1300, 823B-CC-A11-RT-1310, 823B-CC-A11-RT-1232, 823B-CC-A11-RT-1233, 823B-CC-A7-RT-1026, 823B-CC-A7-RT-1024, 823B-CC-A7-RT-1020 | 100% | 2014-05-08 | 2014-05-08 | finish on or before 2013-08-25 | 823B (7 days - 9 hours) |
| 823B-MS-D09-2 |  | Complete construction of all cross passages | milestone | 0d | 2014-01-25 A | 2014-01-25 A | 823B-CC-A10-RT-1096, 823B-CC-A7-RT-1236 | 100% | 2014-03-31 | 2014-03-31 | finish on or before 2013-08-25 | 823B (7 days - 9 hours) |
| 823B-MS-D10 |  | Complete tunnel invert and walkway of the Approach Tunnels and the Shunt Neck | milestone | 0d | 2014-03-30 A | 2014-03-30 A | 823B-CC-A10-RT-1300, 823B-CC-A9-RT-1250, 823B-CC-A9-RT-1120, 823B-CC-A7-RT-1320, 823B-CC-A10-RT-1120, 823B-CC-A7-RT-1328, 823B-CC-A7-RT-1327, 823B-CC-A7-RT-1325, 823B-CC-A7-RT-1324, 823B-CC-A7-RT-1404, 823B-CC-A7-RT-1405, 823B-CC-A9-RT-1340, 823B-CC-A9-RT-1350, 823B-CC-A10-RT-1330, 823B-CC-A10-RT-1340, 823B-CC-A9-RT-1184, 823B-CC-A9-RT-1186, 823B-CC-A10-RT-1243, 823B-CC-A10-RT-1244, 823B-CC-A10-RT-1245, 823B-CC-A10-RT-1246, 823B-CC-A11-RT-1320, 823B-CC-A11-RT-1330, 823B-CC-A11-RT-1236, 823B-CC-A11-RT-1235 | 100% | 2014-07-31 | 2014-07-31 | finish on or before 2013-10-27 | 823B (7 days - 9 hours) |

| ID | WBS | Activity | Type | Duration | Start | Finish | Predecessors | Complete | Planned start | Planned finish | Constraint | Calendar |
| --- | --- | --- | --- | --- | --- | --- | --- | --- | --- | --- | --- | --- |
|  | 05 | **Cost Center E - Running Maintenance Shed** |  |  | 2012-02-29 | 2014-09-30 |  |  |  |  |  |  |
| 823B-MS-E02 |  | Complete 5% of the strip footings | milestone | 0d | 2012-02-29 A | 2012-02-29 A | 823B-E-RMS1-1080, 823B-E-RMS1-1090 | 100% |  |  | finish on 2012-02-29 | 823B (7 days - 9 hours) |
| 823B-MS-E01 |  | Complete 70% of the excavation for the strip footings | milestone | 0d | 2012-07-04 A | 2012-07-04 A | 823B-E-RMS3-1010, 823B-E-RMS3-1020, 823B-E-RMS3-1030, 823B-E-RMS3-1040, 823B-E-RMS3-1050, 823B-E-RMS2-1080, 823B-E-RMS2-1090, 823B-E-RMS2-1100, 823B-E-RMS2-1110, 823B-E-RMS2-1120, 823B-E-RMS2-1130, 823B-E-RMS2-1140, 823B-E-RMS1-1010, 823B-E-RMS1-1020, 823B-E-RMS1-1030, 823B-E-RMS1-1040, 823B-E-RMS1-1050, 823B-E-RMS1-1060, 823B-E-RMS1-1070 | 100% |  |  | finish on 2012-07-04 | 823B (7 days - 9 hours) |
| 823B-MS-E03 |  | Complete 80% of the strip footings | milestone | 0d | 2012-08-31 A | 2012-08-31 A | 823B-E-RMS1-1080, 823B-E-RMS1-1090, 823B-E-RMS1-1100, 823B-E-RMS1-1110, 823B-E-RMS1-1120, 823B-E-RMS1-1130, 823B-E-RMS1-1140, 823B-E-RMS2-1080, 823B-E-RMS2-1090, 823B-E-RMS2-1100, 823B-E-RMS2-1110, 823B-E-RMS2-1120, 823B-E-RMS2-1130, 823B-E-RMS2-1140, 823B-E-RMS3-1120, 823B-E-RMS3-1130, 823B-E-RMS3-1140, 823B-E-RMS3-1150, 823B-E-RMS3-1160, 823B-E-RMS3-1170 | 100% |  |  | finish on 2012-08-31 | 823B (7 days - 9 hours) |
| 823B-MS-E04 |  | Complete the ground level slab | milestone | 0d | 2012-12-27 A | 2012-12-27 A | 823B-E-RMS1-1220, 823B-E-RMS1-1230, 823B-E-RMS1-1240, 823B-E-RMS1-1250, 823B-E-RMS1-1260, 823B-E-RMS1-1270, 823B-E-RMS1-1280, 823B-E-RMS2-1220, 823B-E-RMS2-1230, 823B-E-RMS2-1240, 823B-E-RMS2-1250, 823B-E-RMS2-1260, 823B-E-RMS2-1270, 823B-E-RMS2-1280, 823B-E-RMS3-1340, 823B-E-RMS3-1350, 823B-E-RMS3-1360, 823B-E-RMS3-1370, 823B-E-RMS3-1380, 823B-E-RMS3-1390, 823B-E-RMS3-1400, 823B-E-RMS3-1410, 823B-E-RMS3-1420, 823B-E-RMS3-1430, 823B-E-RMS3-1440 | 100% | 2012-12-12 | 2012-12-12 | finish on or before 2013-01-13 | 823B (7 days - 9 hours) |
| 823B-MS-E05 |  | Complete the roof | milestone | 0d | 2013-05-16 A | 2013-05-16 A | 823B-E-RMS-1190, 823B-E-RMS-1200, 823B-E-RMS-1210, 823B-E-RMS-1220, 823B-E-RMS-1230, 823B-E-RMS-1240, 823B-E-RMS-1250, 823B-E-RMS-1260, 823B-E-RMS-1270, 823B-E-RMS-1280, 823B-E-RMS-1290, 823B-E-RMS-1300, 823B-E-RMS-1310, 823B-E-RMS-1320, 823B-E-RMS-1330, 823B-E-RMS-1340, 823B-E-RMS-1350, 823B-E-RMS-1360 | 100% | 2013-05-07 | 2013-05-07 | finish on or before 2013-06-02 | 823B (7 days - 9 hours) |
| 823B-MS-E06 |  | Complete the platforms | milestone | 0d | 2013-05-31 A | 2013-05-31 A | 823B-E-RMS-1370, 823B-E-RMS-1380, 823B-E-RMS-1390, 823B-E-RMS-1400, 823B-E-RMS-1410, 823B-E-RMS-1420, 823B-E-RMS-1430, 823B-E-RMS-1440, 823B-E-RMS-1450, 823B-E-RMS-1460, 823B-E-RMS-1470, 823B-E-RMS-1480, 823B-E-RMS-1490, 823B-E-RMS-1500, 823B-E-RMS-1510, 823B-E-RMS-1520, 823B-E-RMS-1530, 823B-E-RMS-1540, 823B-E-RMS-1550, 823B-E-RMS-1560, 823B-E-RMS-1570, 823B-E-RMS-1580, 823B-E-RMS-1590, 823B-E-RMS-1600, 823B-E-RMS-1610, 823B-E-RMS-1620, 823B-E-RMS-1630, 823B-E-RMS-1640, 823B-E-RMS-1650, 823B-E-RMS-1660, 823B-E-RMS-1670, 823B-E-RMS-1680, 823B-E-RMS-1690, 823B-E-RMS-1700, 823B-E-RMS-1710, 823B-E-RMS-1720 | 100% | 2013-05-22 | 2013-05-22 | finish on or before 2013-06-16 | 823B (7 days - 9 hours) |
| 823B-MS-E07-1 |  | Complete the track bed | milestone | 0d | 2013-06-30 A | 2013-06-30 A | 823B-RMSA-1030, 823B-RMSA-1040 | 100% | 2013-06-11 | 2013-06-11 | finish on or before 2013-07-07 | 823B (7 days - 9 hours) |
| 823B-MS-E07-2 |  | Complete underground drainage and utilities | milestone | 0d | 2013-06-30 A | 2013-06-30 A | 823B-RDW-1010, 823B-RDW-1015 | 100% | 2013-06-11 | 2013-06-11 | finish on or before 2013-07-07 | 823B (7 days - 9 hours) |
| 823B-MS-E08 |  | Complete ABWF works | milestone | 0d | 2014-02-22 A | 2014-02-22 A | 823B-RMSA-1290, 823B-RMSA-1180, 823B-RMSA-1170 | 100% | 2014-11-13 | 2014-11-13 | finish on or before 2014-02-23 | 823B (7 days - 9 hours) |
| 823B-MS-E09 |  | All works completed necessary for statutory inspections | milestone | 0d | 2014-09-30 A | 2014-09-30 A | 823B-RMSA-1280, 823B-RMSA-1190, 823B-RMSA-1160, 823B-RMSA-1170, 823B-RMSA-1180, 823B-RDW-1025, 823B-RDW-1055 | 100% | 2015-06-04 | 2015-06-04 | finish on or before 2014-09-28 | 823B (7 days - 9 hours) |
|  | 06 | **Cost Center F - SSS Main Building (SMB)** |  |  | 2011-09-16 | 2015-03-29 |  |  |  |  |  |  |
| 823B-MS-F01 |  | Complete 5% of the socketed steel H-piles | milestone | 0d | 2011-09-16 A | 2011-09-16 A | 823B-F-SMB-HP-1010 | 100% |  |  | finish on 2011-09-16 | 823B (7 days - 9 hours) |
| 823B-MS-F02 |  | Complete the socketed steel H-piles | milestone | 0d | 2011-10-31 A | 2011-10-31 A | 823B-F-SMB-HP-1020 | 100% |  |  | finish on 2011-10-31 | 823B (7 days - 9 hours) |
| 823B-MS-F03 |  | Complete all the pile caps and ground beams | milestone | 0d | 2012-07-28 A | 2012-07-28 A | 823B-F-SMB-S-1010, 823B-F-SMB-S-1020, 823B-F-SMB-S-1030 | 100% |  |  | finish on 2012-07-28 | 823B (7 days - 9 hours) |
| 823B-MS-F04 |  | Complete the ground floor slab | milestone | 0d | 2012-10-28 A | 2012-10-28 A | 823B-F-SMB-S-1070, 823B-F-SMB-S-1080, 823B-F-SMB-S-1090 | 100% |  |  | finish on 2012-10-28 | 823B (7 days - 9 hours) |
| 823B-MS-F05 |  | Complete the slab up to level U2 | milestone | 0d | 2012-10-28 A | 2012-10-28 A | 823B-F-SMB-S-1250, 823B-F-SMB-S-1260, 823B-F-SMB-S-1270 | 100% |  |  | finish on 2012-10-28 | 823B (7 days - 9 hours) |
| 823B-MS-F06 |  | Complete the roof | milestone | 0d | 2012-11-29 A | 2012-11-29 A | 823B-F-SMB-S-1300, 823B-F-SMB-S-1310 | 100% |  |  | finish on 2012-11-29 | 823B (7 days - 9 hours) |
| 823B-MS-F07 |  | Complete wall and ceiling finishes to all rooms | milestone | 0d | 2013-10-31 A | 2013-10-31 A | 823B-F-SMB-A-1120, 823B-F-SMB-A-1110, 823B-F-SMB-A-1100, 823B-F-SMB-A-1090, 823B-F-SMB-A-1080, 823B-F-SMB-A-2080, 823B-F-SMB-A-2090, 823B-F-SMB-A-2100, 823B-F-SMB-A-2110, 823B-F-SMB-A-2120, 823B-F-SMB-A-3110, 823B-F-SMB-A-3120 | 100% | 2013-09-24 | 2013-09-24 | finish on or before 2013-12-29 | 823B (7 days - 9 hours) |
| 823B-MS-F08 |  | Complete all ABWF works | milestone | 0d | 2013-12-29 A | 2013-12-29 A | 823B-F-SMB-A-3130, 823B-F-SMB-A-3140, 823B-F-SMB-A-3150, 823B-F-SMB-A-2130, 823B-F-SMB-A-2140, 823B-F-SMB-A-1130, 823B-F-SMB-A-1140 | 100% | 2013-11-30 | 2013-11-30 | finish on or before 2013-12-29 | 823B (7 days - 9 hours) |
| 823B-MS-F09 |  | Complete external watermain works and connect to the building | milestone | 0d | 2014-03-30 A | 2014-03-30 A | 823B-RDW-1010, 823B-RDW-1025, 823B-RDW-1015 | 100% | 2014-05-03 | 2014-05-03 | finish on or before 2013-12-04 | 823B (7 days - 9 hours) |
| 823B-MS-F10 |  | All works complete necessary for statutory inspection | milestone | 0d | 2015-03-29 A | 2015-03-29 A | 823B-RDW-1030, 823B-RDW-1035, 823B-RDW-1055 | 100% | 2015-07-07 | 2015-07-07 | finish on or before 2014-09-28 | 823B (7 days - 9 hours) |
|  | 07 | **Cost Center G - Infrastructure, Building Maintenance and P'Way Building (IBP)** |  |  | 2012-09-07 | 2014-09-30 |  |  |  |  |  |  |
| 823B-MS-G01 |  | Complete the strip footings | milestone | 0d | 2012-09-07 A | 2012-09-07 A | 823B-G-IBP-S-1040, 823B-G-IBP-S-1050, 823B-G-IBP-S-1060 | 100% |  |  | finish on 2012-09-07 | 823B (7 days - 9 hours) |
| 823B-MS-G02 |  | Complete the ground floor slab | milestone | 0d | 2012-11-25 A | 2012-11-25 A | 823B-G-IBP-S-1130, 823B-G-IBP-S-1140, 823B-G-IBP-S-1150 | 100% |  |  | finish on 2012-11-25 | 823B (7 days - 9 hours) |
| 823B-MS-G03 |  | Complete the roof | milestone | 0d | 2013-02-01 A | 2013-02-01 A | 823B-G-IBP-S-1220, 823B-G-IBP-S-1230, 823B-G-IBP-S-1240 | 100% | 2013-02-23 | 2013-02-23 | finish on or before 2013-03-24 | 823B (7 days - 9 hours) |
| 823B-MS-G04 |  | Complete floor, wall and ceiling finishes to all plant rooms | milestone | 0d | 2013-07-31 A | 2013-07-31 A | 823B-G-IBP-A-2080, 823B-G-IBP-A-2090, 823B-G-IBP-A-2100, 823B-G-IBP-A-2110, 823B-G-IBP-A-2120, 823B-G-IBP-A-2130, 823B-G-IBP-A-2140, 823B-G-IBP-A-2150, 823B-G-IBP-A-2160, 823B-G-IBP-A-2170, 823B-G-IBP-A-2180, 823B-G-IBP-A-2190 | 100% | 2013-10-21 | 2013-10-21 | finish on or before 2013-11-24 | 823B (7 days - 9 hours) |
| 823B-MS-G05 |  | Complete all ABWF works | milestone | 0d | 2013-10-31 A | 2013-10-31 A | 823B-G-IBP-A-2450, 823B-G-IBP-A-2460, 823B-G-IBP-A-2470, 823B-G-IBP-A-2480, 823B-G-IBP-A-2490, 823B-G-IBP-A-2500, 823B-G-IBP-A-2420, 823B-G-IBP-A-2430, 823B-G-IBP-A-2440, 823B-G-IBP-A-2390, 823B-G-IBP-A-2400, 823B-G-IBP-A-2410, 823B-G-IBP-A-2360, 823B-G-IBP-A-2370, 823B-G-IBP-A-2380, 823B-G-IBP-A-2300, 823B-G-IBP-A-2310, 823B-G-IBP-A-2320, 823B-G-IBP-A-2270, 823B-G-IBP-A-2280, 823B-G-IBP-A-2290 | 100% | 2013-10-21 | 2013-10-21 | finish on or before 2013-10-27 | 823B (7 days - 9 hours) |
| 823B-MS-G06 |  | Complete the external watermain works and connect to the building | milestone | 0d | 2014-04-27 A | 2014-04-27 A | 823B-RDW-1010, 823B-RDW-1030, 823B-RDW-1025, 823B-RDW-1015, 823B-RDW-1035 | 100% | 2014-12-02 | 2014-12-02 | finish on or before 2014-05-07 | 823B (7 days - 9 hours) |
| 823B-MS-G07 |  | All works complete necessary for statutory inspections | milestone | 0d | 2014-09-30 A | 2014-09-30 A | 823B-RDW-1055 | 100% | 2015-06-04 | 2015-06-04 | finish on or before 2014-09-28 | 823B (7 days - 9 hours) |

| ID | WBS | Activity | Type | Duration | Start | Finish | Predecessors | Complete | Planned start | Planned finish | Total float | Free float | Constraint | Calendar |
| --- | --- | --- | --- | --- | --- | --- | --- | --- | --- | --- | --- | --- | --- | --- |
|  | 08 | **Cost Center H - Other Buildings & Structures** |  |  | 2012-10-28 | 2015-03-29 |  |  |  |  |  |  |  |  |
| 823B-MS-H01 |  | Complete 60% of the ground slab of the Shek Kong Feeder Station | milestone | 0d | 2012-10-28 A | 2012-10-28 A | 823B-H-SHK-Z2-1220, 823B-H-SHK-Z1-1220, 823B-H-SHK-Z1-1240 | 100% |  |  |  |  | finish on 2012-10-28 | 823B (7 days - 9 hours) |
| 823B-MS-H02 |  | Complete 5% of footings and strip footings of the Rail Stillages and FBW Steel Portal | milestone | 0d | 2013-03-31 A | 2013-03-31 A | 823B-H-RSP-1060 | 100% | 2013-01-08 | 2013-01-08 |  |  | finish on or before 2013-02-03 | 823B (7 days - 9 hours) |
| 823B-MS-H04 |  | Complete all ABWF works for Shek Kong Feeder Station | milestone | 0d | 2013-06-08 A | 2013-06-08 A | 823B-H-SHK-A-1010, 823B-H-SHK-A-1020, 823B-H-SHK-A-1030, 823B-H-SHK-A-1040, 823B-H-SHK-A-1050, 823B-H-SHK-A-1060, 823B-H-SHK-A-1070, 823B-H-SHK-A-1080, 823B-H-SHK-A-1090, 823B-H-SHK-A-1100, 823B-H-SHK-A-1110, 823B-H-SHK-A-1120, 823B-H-SHK-A-1130 | 100% |  |  |  |  | finish on or before 2013-07-07 | 823B (7 days - 9 hours) |
| 823B-MS-H03 |  | Complete all footings and strip footings of the Rail Stillages and FBW Steel Portal | milestone | 0d | 2013-06-30 A | 2013-06-30 A | 823B-H-RSP-1060, 823B-H-RSP-1130, 823B-H-RSP-1170 | 100% | 2013-04-02 | 2013-04-02 |  |  | finish on or before 2013-04-28 | 823B (7 days - 9 hours) |
| 823B-MS-H05 |  | Complete the sub-ballast / track bed for the Rail Stillages & FBW Steel Portal, S&C Assembly Storage and Loco Shed | milestone | 0d | 2013-08-31 A | 2013-08-31 A | 823B-H-RSP-1050 | 100% | 2013-05-20 | 2013-05-20 |  |  | finish on or before 2013-05-26 | 823B (7 days - 9 hours) |
| 823B-MS-H06 |  | Complete the structure of Water Pump House, Dangerous Goods Store and Security Operation Centre | milestone | 0d | 2013-09-28 A | 2013-09-28 A | 823B-H-DGS-S-1030, 823B-H-DGS-S-1040, 823B-H-DGS-S-1050, 823B-H-DGS-S-1060, 823B-H-DGS-S-1070, 823B-H-DGS-S-1080, 823B-H-DGS-S-1090, 823B-H-SOC-S-1050, 823B-H-SOC-S-1060, 823B-H-SOC-S-1070, 823B-H-SOC-S-1080, 823B-H-SOC-S-1090, 823B-H-WPH-S-1050, 823B-H-WPH-S-1060, 823B-H-WPH-S-1070, 823B-H-WPH-S-1080, 823B-H-WPH-S-1090, 823B-H-WPH-S-1100 | 100% | 2013-04-16 | 2013-04-16 |  |  | finish on or before 2013-05-19 | 823B (7 days - 9 hours) |
| 823B-MS-H07 |  | Complete all ABWF works for all buildings | milestone | 0d | 2015-01-31 A | 2015-01-31 A | 823B-H-DGS-A-1010, 823B-H-DGS-A-1020, 823B-H-DGS-A-1030, 823B-H-DGS-A-1040, 823B-H-DGS-A-1050, 823B-H-DGS-A-1060, 823B-H-DGS-A-1070, 823B-H-DGS-A-1080, 823B-H-DGS-A-1090, 823B-H-DGS-A-1100, 823B-H-DGS-A-1110, 823B-H-DGS-A-1120, 823B-H-SOC-A-1010, 823B-H-SOC-A-1020, 823B-H-SOC-A-1030, 823B-H-SOC-A-1040, 823B-H-SOC-A-1050, 823B-H-SOC-A-1060, 823B-H-SOC-A-1070, 823B-H-SOC-A-1080, 823B-H-SOC-A-1090, 823B-H-SOC-A-1100, 823B-H-SOC-A-1110, 823B-H-SOC-A-1120, 823B-H-SOC-A-1130, 823B-H-SOC-A-1140, 823B-H-SOC-A-1150, 823B-H-SOC-A-1160, 823B-H-WPH-A-1010, 823B-H-WPH-A-1020, 823B-H-WPH-A-1030, 823B-H-WPH-A-1040, 823B-H-WPH-A-1050, 823B-H-WPH-A-1060, 823B-H-WPH-A-1070, 823B-H-WPH-A-1080, 823B-H-TWP-A-1010, 823B-H-TWP-A-1020, 823B-H-TWP-A-1030, 823B-H-TWP-A-1040, 823B-H-TWP-A-1050, 823B-H-TWP-A-1060, 823B-H-TWP-A-1070, 823B-H-TWP-A-1080, 823B-H-TWP-A-1090, 823B-H-DFS-A-2010, 823B-H-RSP-2010, 823B-H-WPH-B-1000 | 100% | 2015-04-11 | 2015-04-11 |  |  | finish on or before 2014-03-30 | 823B (7 days - 9 hours) |
| 823B-MS-H08 |  | Complete external watermain works and connect to the building | milestone | 0d | 2015-01-31 A | 2015-01-31 A | 823B-RDW-1010, 823B-RDW-1030, 823B-RDW-1025, 823B-RDW-1015, 823B-RDW-1035, 823B-H-TWP-B-1000, 823B-H-WPH-B-3000, 823B-H-WPH-B-2000, 823B-H-SOC-B-3000, 823B-H-SOC-B-2000 | 100% | 2015-01-29 | 2015-01-29 |  |  | finish on or before 2014-05-11 | 823B (7 days - 9 hours) |
| 823B-MS-H09 |  | All works complete for the remaining buildings necessary for statutory inspections | milestone | 0d | 2015-03-29 A | 2015-03-29 A | 823B-H-TWP-S-1050, 823B-H-TWP-S-1060, 823B-H-TWP-S-1070, 823B-H-TWP-S-1080, 823B-H-TWP-S-1090, 823B-H-TWP-S-1100, 823B-H-TWP-S-1110, 823B-H-DFS-S-1030, 823B-H-DFS-S-1040, 823B-H-DFS-S-1050, 823B-H-DFS-S-1060, 823B-H-DFS-S-1070, 823B-H-DFS-S-1080, 823B-H-DFS-A-2010, 823B-H-TWP-A-1010, 823B-H-TWP-A-1020, 823B-H-TWP-A-1030, 823B-H-TWP-A-1040, 823B-H-TWP-A-1050, 823B-H-TWP-A-1060, 823B-H-TWP-A-1070, 823B-H-TWP-A-1080, 823B-H-TWP-A-1090, 823B-RDW-1055, 823B-H-TWP-B-2000, 823B-H-WPH-B-4000, 823B-H-SOC-B-3000, 823B-H-SOC-B-4000 | 100% | 2015-07-07 | 2015-07-07 |  |  | finish on or before 2014-09-28 | 823B (7 days - 9 hours) |
|  | 09 | **Cost Center J - Stabling Sidings & External Works** |  |  | 2011-09-30 | 2016-10-01 |  |  |  |  |  |  |  |  |
| 823B-MS-J01 |  | Complete 5% of the East Culvert | milestone | 0d | 2011-09-30 A | 2011-09-30 A | 823B-EBC-1060, 823B-EBC-1120 | 100% |  |  |  |  | finish on 2011-09-30 | 823B (7 days - 9 hours) |
| 823B-MS-J02 |  | Complete 10% of excavation | milestone | 0d | 2011-10-31 A | 2011-10-31 A | 823B-SFE-1010 | 100% |  |  |  |  | finish on 2011-10-31 | 823B (7 days - 9 hours) |
| 823B-MS-J03-1 |  | Complete temporary diversion of the Kam Tin Road | milestone | 0d | 2012-07-25 A | 2012-07-25 A | 823B-KTR-1010 | 100% |  |  |  |  | finish on 2012-07-25 | 823B (7 days - 9 hours) |
| 823B-MS-J03-2 |  | Complete the temporary diversions of Leung Uk Tsuen Stream and the Shek Kong Stream | milestone | 0d | 2012-07-25 A | 2012-07-25 A | 823B-SFE-1010, 823B-ERS-A1-DW-1010 | 100% | 2012-10-28 | 2012-10-28 |  |  | finish on 2012-10-28 | 823B (7 days - 9 hours) |
| 823B-MS-J04 |  | Commissioning of West Culvert | milestone | 0d | 2012-10-28 A | 2012-10-28 A | 823B-WBC-1010 | 100% |  |  |  |  | finish on 2012-10-28 | 823B (7 days - 9 hours) |
| 823B-MS-J05 |  | Complete 100% of excavation | milestone | 0d | 2013-01-31 A | 2013-01-31 A | 823B-H-TWP-S-1010, 823B-H-TWP-S-1020, 823B-H-TWP-S-1030 | 100% | 2013-04-20 | 2013-04-20 |  |  | finish on or before 2013-05-05 | 823B (7 days - 9 hours) |
| 823B-MS-J06-1 |  | Complete the East Culvert and associated drainage connections | milestone | 0d | 2013-03-23 A | 2013-03-23 A | 823B-EBC-1010, 823B-EBC-1040, 823B-EBC-1090, 823B-EBC-1140, 823B-EBC-1170, 823B-EBC-1210, 823B-EBC-1250, 823B-EBC-1320, 823B-EBC-1370, 823B-EBC-1420, 823B-EBC-1470, 823B-EBC-1510, 823B-EBC-1560, 823B-EBC-1580, 823B-EBC-1020, 823B-EBC-1100, 823B-EBC-1240, 823B-EBC-1260, 823B-EBC-1290, 823B-EBC-1310, 823B-EBC-1330, 823B-EBC-1380, 823B-EBC-1410, 823B-EBC-1435, 823B-EBC-1570, 823B-EBC-1520 | 100% |  |  |  |  | finish on or before 2013-03-31 | 823B (7 days - 9 hours) |
| 823B-MS-J06-2 |  | Complete all FMRS / gauging stations to Shek Kong Stream | milestone | 0d | 2013-03-23 A | 2013-03-23 A | 823B-EBC-1580 | 100% |  |  |  |  | finish on or before 2013-03-31 | 823B (7 days - 9 hours) |
| 823B-MS-J07 |  | Complete 40% of OHL mast foundation | milestone | 0d | 2013-05-31 A | 2013-05-31 A | 823B-STR-1020, 823B-STR-1030 | 100% | 2013-07-27 | 2013-07-27 |  |  | finish on or before 2013-08-25 | 823B (7 days - 9 hours) |
| 823B-MS-J08 |  | Complete 60% of filling for SSS | milestone | 0d | 2013-08-31 A | 2013-08-31 A | 823B-SFE-1010, 823B-SFE-1020 | 100% | 2013-04-15 | 2013-04-15 |  |  | finish on or before 2013-06-30 | 823B (7 days - 9 hours) |
| 823B-MS-J09 |  | Complete all OHL mast foundation and sub-ballast | milestone | 0d | 2013-09-28 A | 2013-09-28 A | 823B-STR-1010, 823B-STR-1020, 823B-STR-1030 | 100% | 2013-08-10 | 2013-08-10 |  |  | finish on or before 2013-08-25 | 823B (7 days - 9 hours) |
| 823B-MS-J12 |  | Complete the access road to Shek Kok Feeder Station | milestone | 0d | 2013-10-12 A | 2013-10-12 A | 823B-RDW-1010, 823B-RDW-1040, 823B-RDW-1015 | 100% | 2014-01-04 | 2014-01-04 |  |  | finish on or before 2014-02-09 | 823B (7 days - 9 hours) |
| 823B-MS-J10 |  | Complete 50% of access road south of ERS | milestone | 0d | 2014-01-25 A | 2014-01-25 A | 823B-RDW-1060, 823B-RDW-1025, 823B-RDW-1067 | 100% | 2016-03-15 | 2016-03-15 |  |  | finish on or before 2013-11-24 | 823B (7 days - 9 hours) |
| 823B-MS-J11 |  | Complete the chain link fence prior to energisation of track | milestone | 0d | 2014-02-22 A | 2014-02-22 A | 823B-SFE-1030 | 100% | 2014-01-08 | 2014-01-08 |  |  | finish on or before 2014-02-23 | 823B (7 days - 9 hours) |
| 823B-MS-J13-1 |  | Complete access roads to ERS Plant Buildings for statutory inspections | milestone | 0d | 2015-07-31 A | 2015-07-31 A | 823B-RDW-1030, 823B-RDW-1035, 823B-RDW-1055 | 100% | 2015-10-09 | 2015-10-09 |  |  | finish on or before 2014-09-28 |  |
| 823B-MS-J13-3 |  | Complete access roads from Kam Tin Road to Rail Stillages and Running Maintenance Shed | milestone | 0d | 2015-07-31 A | 2015-07-31 A | 823B-RDW-1010, 823B-RDW-1025, 823B-RDW-1015, 823B-RDW-1055 | 100% | 2015-10-09 | 2015-10-09 |  |  | finish on or before 2014-09-28 | 823B (7 days - 9 hours) |
| 823B-MS-J13-2 |  | Complete 100% of access roads with SSS and ERS | milestone | 0d | 2016-07-01 A | 2016-07-01 A | 823B-RDW-1055 | 100% |  |  |  |  | finish on or before 2014-09-28 | 823B (7 days - 9 hours) |
| 823B-MS-J14 |  | Complete river habitat and stream widening | milestone | 0d | 2016-10-01 | 2016-10-01 | 823B-RHW-2030, 823B-RHW-4020, 823B-RHW-3030 |  |  |  | -740d | 140d | finish on or before 2014-09-21 | 823B (7 days - 9 hours) |

| ID | WBS | Activity | Type | Duration | Start | Finish | Predecessors | Complete | Total float | Free float | Constraint | Calendar | 823B_As-built |
| --- | --- | --- | --- | --- | --- | --- | --- | --- | --- | --- | --- | --- | --- |
|  | 10 | **Cost Center K - To Kau Wan Stockpiling Facilities** |  |  | 2010-12-12 | 2012-01-15 |  |  |  |  |  |  |  |
| 823B-MS-K01 |  | Approval of the design for receiving and stockpiling the spoil | milestone | 0d | 2010-12-12 A | 2010-12-12 A |  | 100% |  |  | finish on 2010-12-12 | 823B (7 days - 9 hours) |  |
| 823B-MS-K02 |  | Construct all facilities and ready for receiving spoil | milestone | 0d | 2011-02-13 A | 2011-02-13 A | 823B-K-TKW-1080 | 100% |  |  | finish on 2011-02-13 | 823B (7 days - 9 hours) |  |
| 823B-MS-K03 |  | Obtain Engineer's confirmation of satisfactory management of stockpiling facility | milestone | 0d | 2011-05-29 A | 2011-05-29 A | 823B-K-TKW-1090 | 100% |  |  | finish on 2011-05-29 | 823B (7 days - 9 hours) |  |
| 823B-MS-K05 |  | Approval of final survey to demostrate stockfilling as approved by the Engineer's Representative | milestone | 0d | 2011-12-31 A | 2011-12-31 A | 823B-K-TKW-1110 | 100% |  |  | finish on 2011-12-31 | 823B (7 days - 9 hours) |  |
| 823B-MS-K06-1 |  | Complete erosion protection measures & drainage system and ready to hand over the stockpiling facility to the Employer | milestone | 0d | 2012-01-15 A | 2012-01-15 A | 823B-K-TKW-1120 | 100% |  |  | finish on 2012-01-15 | 823B (7 days - 9 hours) |  |
| 823B-MS-K06-2 |  | Remove all temp facilities as req'd by Engineer and ready to hand over the stockpiling facility to the Employer | milestone | 0d | 2012-01-15 A | 2012-01-15 A | 823B-K-TKW-1130 | 100% |  |  | finish on 2012-01-15 | 823B (7 days - 9 hours) |  |
|  | 6 | **SCHEDULE OF ACCESS DATES FOR WORKS AREA** |  |  | 2010-10-28 | 2017-02-17 |  |  |  |  |  |  |  |
|  | 01 | **Possession Date** |  |  | 2010-10-28 | 2016-10-01 |  |  |  |  |  |  |  |
|  | 1 | **First Possession** |  |  | 2010-10-28 | 2016-10-01 |  |  |  |  |  |  |  |
| 823B-AC-0230 |  | Works Area 14.1 | milestone | 0d | 2010-10-28 A | 2010-10-28 A |  | 100% |  |  | start on 2010-10-28 | 823B (7 days - 9 hours) | 823B_AB |
| 823B-AC-0235 |  | Works Area 14.2 | milestone | 0d | 2010-10-28 A | 2010-10-28 A |  | 100% |  |  | start on 2010-10-28 | 823B (7 days - 9 hours) | 823B_AB |
| 823B-AC-0225 |  | Works Area 9.5 | milestone | 0d | 2010-12-01 A | 2010-12-01 A |  | 100% |  |  | start on 2010-12-01 | 823B (7 days - 9 hours) | 823B_AB |
| 823B-AC-0020 |  | Works Area 4.8E | milestone | 0d | 2011-01-03 A | 2011-01-03 A |  | 100% |  |  | start on 2011-01-03 | 823B (7 days - 9 hours) | 823B_AB |
| 823B-AC-0025 |  | Works Area 4.18D | milestone | 0d | 2011-01-03 A | 2011-01-03 A |  | 100% |  |  | start on 2011-01-03 | 823B (7 days - 9 hours) | 823B_AB |
| 823B-AC-0040 |  | Works Area 4.17C | milestone | 0d | 2011-01-03 A | 2011-01-03 A |  | 100% |  |  | start on 2011-01-03 | 823B (7 days - 9 hours) | 823B_AB |
| 823B-AC-0150 |  | Works Area 4.23C | milestone | 0d | 2011-01-03 A | 2011-01-03 A |  | 100% |  |  | start on 2011-01-03 | 823B (7 days - 9 hours) | 823B_AB |
| 823B-AC-0010 |  | Works Area 4.18C | milestone | 0d | 2011-02-22 A | 2011-02-22 A |  | 100% |  |  | start on 2011-02-22 | 823B (7 days - 9 hours) | 823B_AB |
| 823B-AC-0015 |  | Works Area 4.8A | milestone | 0d | 2011-02-22 A | 2011-02-22 A |  | 100% |  |  | start on 2011-02-22 | 823B (7 days - 9 hours) | 823B_AB |
| 823B-AC-0035 |  | Works Area 4.17B | milestone | 0d | 2011-02-22 A | 2011-02-22 A |  | 100% |  |  | start on 2011-02-22 | 823B (7 days - 9 hours) | 823B_AB |
| 823B-AC-0080 |  | Works Area 4.18A | milestone | 0d | 2011-02-22 A | 2011-02-22 A |  | 100% |  |  | start on 2011-02-22 | 823B (7 days - 9 hours) | 823B_AB |
| 823B-AC-0090 |  | Works Area 4.19D | milestone | 0d | 2011-02-22 A | 2011-02-22 A |  | 100% |  |  | start on 2011-02-22 | 823B (7 days - 9 hours) | 823B_AB |
| 823B-AC-0135 |  | Works Area 4.23B | milestone | 0d | 2011-02-22 A | 2011-02-22 A |  | 100% |  |  | start on 2011-02-22 | 823B (7 days - 9 hours) | 823B_AB |
| 823B-AC-0140 |  | Works Area 4.23D | milestone | 0d | 2011-02-22 A | 2011-02-22 A |  | 100% |  |  | start on 2011-02-22 | 823B (7 days - 9 hours) | 823B_AB |
| 823B-AC-0145 |  | Works Area 4.23F | milestone | 0d | 2011-02-22 A | 2011-02-22 A |  | 100% |  |  | start on 2011-02-22 | 823B (7 days - 9 hours) | 823B_AB |
| 823B-AC-0160 |  | Works Area 4.23E | milestone | 0d | 2011-02-22 A | 2011-02-22 A |  | 100% |  |  | start on 2011-02-22 | 823B (7 days - 9 hours) | 823B_AB |
| 823B-AC-0155 |  | Works Area 4.8 | milestone | 0d | 2011-03-01 A | 2011-03-01 A |  | 100% |  |  | start on 2011-03-01 | 823B (7 days - 9 hours) | 823B_AB |
| 823B-AC-0065 |  | Works Area 4.2A | milestone | 0d | 2011-04-12 A | 2011-04-12 A |  | 100% |  |  | start on 2011-04-12 | 823B (7 days - 9 hours) | 823B_AB |
| 823B-AC-0070 |  | Works Area 4.5 | milestone | 0d | 2011-04-12 A | 2011-04-12 A |  | 100% |  |  | start on 2011-04-12 | 823B (7 days - 9 hours) | 823B_AB |
| 823B-AC-0075 |  | Works Area 4.6A | milestone | 0d | 2011-04-12 A | 2011-04-12 A |  | 100% |  |  | start on 2011-04-12 | 823B (7 days - 9 hours) | 823B_AB |
| 823B-AC-0120 |  | Works Area 4.22A | milestone | 0d | 2011-05-12 A | 2011-05-12 A |  | 100% |  |  | start on 2011-05-12 | 823B (7 days - 9 hours) | 823B_AB |
| 823B-AC-0030 |  | Works Area 4.17A | milestone | 0d | 2011-05-13 A | 2011-05-13 A |  | 100% |  |  | start on 2011-05-13 | 823B (7 days - 9 hours) | 823B_AB |
| 823B-AC-0045 |  | Works Area 4.19A | milestone | 0d | 2011-05-13 A | 2011-05-13 A |  | 100% |  |  | start on 2011-05-13 | 823B (7 days - 9 hours) | 823B_AB |
| 823B-AC-0050 |  | Works Area 4.19B | milestone | 0d | 2011-05-13 A | 2011-05-13 A |  | 100% |  |  | start on 2011-05-13 | 823B (7 days - 9 hours) | 823B_AB |
| 823B-AC-0055 |  | Works Area 4.19C | milestone | 0d | 2011-05-13 A | 2011-05-13 A |  | 100% |  |  | start on 2011-05-13 | 823B (7 days - 9 hours) | 823B_AB |
| 823B-AC-0060 |  | Works Area 4.19E | milestone | 0d | 2011-05-13 A | 2011-05-13 A |  | 100% |  |  | start on 2011-05-13 | 823B (7 days - 9 hours) | 823B_AB |
| 823B-AC-0095 |  | Works Area 4.20A | milestone | 0d | 2011-05-13 A | 2011-05-13 A |  | 100% |  |  | start on 2011-05-13 | 823B (7 days - 9 hours) | 823B_AB |
| 823B-AC-0100 |  | Works Area 4.20B | milestone | 0d | 2011-05-13 A | 2011-05-13 A |  | 100% |  |  | start on 2011-05-13 | 823B (7 days - 9 hours) | 823B_AB |
| 823B-AC-0105 |  | Works Area 4.20C | milestone | 0d | 2011-05-13 A | 2011-05-13 A |  | 100% |  |  | start on 2011-05-13 | 823B (7 days - 9 hours) | 823B_AB |
| 823B-AC-0115 |  | Works Area 4.21B | milestone | 0d | 2011-05-13 A | 2011-05-13 A |  | 100% |  |  | start on 2011-05-13 | 823B (7 days - 9 hours) | 823B_AB |
| 823B-AC-0125 |  | Works Area 4.22B | milestone | 0d | 2011-05-13 A | 2011-05-13 A |  | 100% |  |  | start on 2011-05-13 | 823B (7 days - 9 hours) | 823B_AB |
| 823B-AC-0130 |  | Works Area 4.23A | milestone | 0d | 2011-05-13 A | 2011-05-13 A |  | 100% |  |  | start on 2011-05-13 | 823B (7 days - 9 hours) | 823B_AB |
| 823B-AC-0110 |  | Works Area 4.21A | milestone | 0d | 2011-05-25 A | 2011-05-25 A |  | 100% |  |  | start on 2011-05-25 | 823B (7 days - 9 hours) | 823B_AB |
| 823B-AC-0085 |  | Works Area 4.18B | milestone | 0d | 2011-06-07 A | 2011-06-07 A |  | 100% |  |  | start on 2011-06-07 | 823B (7 days - 9 hours) | 823B_AB |
| 823B-AC-0205 |  | Works Area 4.1 (subject to SLG Approval) | milestone | 0d | 2011-07-17 A | 2011-07-17 A |  | 100% |  |  |  | 823B (7 days - 9 hours) | 823B_AB |
| 823B-AC-0210 |  | Works Area 4.7 (subject to SLG Approval) | milestone | 0d | 2011-07-17 A | 2011-07-17 A |  | 100% |  |  |  | 823B (7 days - 9 hours) | 823B_AB |
| 823B-AC-0200 |  | Works Area 4.6 (subject to Government Authorities' Approval) | milestone | 0d | 2011-08-18 A | 2011-08-18 A |  | 100% |  |  |  | 823B (7 days - 9 hours) | 823B_AB |
| 823B-AC-0215 |  | Works Area 4.13 (subject to SLG Approval) | milestone | 0d | 2015-08-01 A | 2015-08-01 A | 823B-AC-0165 SS, 823B-AC-0170 SS, 823B-AC-0175 SS, 823B-AC-0180 SS, 823B-AC-0185 SS, 823B-AC-0190 SS, 823B-AC-0195 SS | 100% |  |  |  | 823B (7 days - 9 hours) | 823B_AB |
| 823B-AC-0220 |  | Works Area 4.16 (subject to SLG Approval) | milestone | 0d | 2015-08-01 A | 2015-08-01 A | 823B-AC-0165 SS, 823B-AC-0170 SS, 823B-AC-0175 SS, 823B-AC-0180 SS, 823B-AC-0185 SS, 823B-AC-0190 SS, 823B-AC-0195 SS | 100% |  |  |  | 823B (7 days - 9 hours) | 823B_AB |
| 823B-AC-0175 |  | Works Area 4.11 | milestone | 0d | 2016-03-01 A | 2016-03-01 A |  | 100% |  |  | start on 2014-06-30 | 823B (7 days - 9 hours) | 823B_AB |
| 823B-AC-0185 |  | Works Area 4.15 | milestone | 0d | 2016-03-01 A | 2016-03-01 A |  | 100% |  |  | start on 2014-06-30 | 823B (7 days - 9 hours) | 823B_AB |
| 823B-AC-0190 |  | Works Area 4.15A | milestone | 0d | 2016-03-01 A | 2016-03-01 A |  | 100% |  |  | start on 2014-06-30 | 823B (7 days - 9 hours) | 823B_AB |
| 823B-AC-0195 |  | Works Area 4.15B | milestone | 0d | 2016-03-01 A | 2016-03-01 A |  | 100% |  |  | start on 2014-06-30 | 823B (7 days - 9 hours) | 823B_AB |
| 823B-AC-0165 |  | Works Area 4.10 | milestone | 0d | 2016-06-01 A | 2016-06-01 A |  | 100% |  |  | start on 2014-06-30 | 823B (7 days - 9 hours) | 823B_AB |
| 823B-AC-0170 |  | Works Area 4.10A | milestone | 0d | 2016-06-01 A | 2016-06-01 A |  | 100% |  |  | start on 2014-06-30 | 823B (7 days - 9 hours) | 823B_AB |
| 823B-AC-0180 |  | Works Area 4.12B | milestone | 0d | 2016-10-01 | 2016-10-01 |  |  | -824d | 0d | start on 2014-06-30 | 823B (7 days - 9 hours) | 823B_AB |

| ID | WBS | Activity | Type | Duration | Start | Finish | Predecessors | Complete | Planned start | Planned finish | Total float | Free float | Constraint | Calendar | 823B_As-built |
| --- | --- | --- | --- | --- | --- | --- | --- | --- | --- | --- | --- | --- | --- | --- | --- |
|  | 2 | **Second Possession** |  |  | 2016-06-01 | 2016-06-01 |  |  |  |  |  |  |  |  |  |
| 823B-AC-0240 |  | Works Area 4.17A | milestone | 0d | 2016-06-01 A | 2016-06-01 A |  | 100% |  |  |  |  | start on 2014-11-03 | 823B (7 days - 9 hours) | 823B_AB |
| 823B-AC-0245 |  | Works Area 4.17B | milestone | 0d | 2016-06-01 A | 2016-06-01 A |  | 100% |  |  |  |  | start on 2014-11-03 | 823B (7 days - 9 hours) | 823B_AB |
| 823B-AC-0250 |  | Works Area 4.17C | milestone | 0d | 2016-06-01 A | 2016-06-01 A |  | 100% |  |  |  |  | start on 2014-11-03 | 823B (7 days - 9 hours) | 823B_AB |
| 823B-AC-0255 |  | Works Area 4.19A | milestone | 0d | 2016-06-01 A | 2016-06-01 A |  | 100% |  |  |  |  | start on 2014-11-03 | 823B (7 days - 9 hours) | 823B_AB |
| 823B-AC-0260 |  | Works Area 4.19B | milestone | 0d | 2016-06-01 A | 2016-06-01 A |  | 100% |  |  |  |  | start on 2014-11-03 | 823B (7 days - 9 hours) | 823B_AB |
| 823B-AC-0265 |  | Works Area4.19C | milestone | 0d | 2016-06-01 A | 2016-06-01 A |  | 100% |  |  |  |  | start on 2014-11-03 | 823B (7 days - 9 hours) | 823B_AB |
| 823B-AC-0270 |  | Works Area 4.19E | milestone | 0d | 2016-06-01 A | 2016-06-01 A |  | 100% |  |  |  |  | start on 2014-11-03 | 823B (7 days - 9 hours) | 823B_AB |
| 823B-AC-0275 |  | Works Area 4.18C | milestone | 0d | 2016-06-01 A | 2016-06-01 A |  | 100% |  |  |  |  | start on 2015-03-02 | 823B (7 days - 9 hours) | 823B_AB |
| 823B-AC-0280 |  | Works Area 4.8A | milestone | 0d | 2016-06-01 A | 2016-06-01 A |  | 100% |  |  |  |  | start on 2015-06-29 | 823B (7 days - 9 hours) | 823B_AB |
| 823B-AC-0285 |  | Works Area 4.8E | milestone | 0d | 2016-06-01 A | 2016-06-01 A |  | 100% |  |  |  |  | start on 2015-06-29 | 823B (7 days - 9 hours) | 823B_AB |
| 823B-AC-0290 |  | Works Area 4.18D | milestone | 0d | 2016-06-01 A | 2016-06-01 A |  | 100% |  |  |  |  | start on 2015-06-29 | 823B (7 days - 9 hours) | 823B_AB |
|  | 02 | **Return Date** |  |  | 2012-01-16 | 2017-02-17 |  |  |  |  |  |  |  |  |  |
|  | 1 | **from First Possession** |  |  | 2012-01-16 | 2017-02-17 |  |  |  |  |  |  |  |  |  |
| 823B-HO-0230 |  | Works Area 14.1 | milestone | 0d | 2012-01-16 A | 2012-01-16 A | 823B-K-TKW-1130 | 100% |  |  |  |  | finish on 2012-01-16 | 823B (7 days - 9 hours) | 823B_AB |
| 823B-HO-0235 |  | Works Area 14.2 | milestone | 0d | 2012-01-16 A | 2012-01-16 A | 823B-K-TKW-1130 | 100% |  |  |  |  | finish on 2012-01-16 | 823B (7 days - 9 hours) | 823B_AB |
| 823B-HO-0010 |  | Works Area 4.18C | milestone | 0d | 2012-09-02 A | 2012-09-02 A |  | 100% |  |  |  |  | finish on or after 2012-09-02 | 823B (7 days - 9 hours) | 823B_AB |
| 823B-HO-0015 |  | Works Area 4.8A | milestone | 0d | 2012-12-30 A | 2012-12-30 A |  | 100% |  |  |  |  | finish on 2012-12-30 | 823B (7 days - 9 hours) | 823B_AB |
| 823B-HO-0020 |  | Works Area 4.8E | milestone | 0d | 2012-12-30 A | 2012-12-30 A |  | 100% |  |  |  |  | finish on 2012-12-30 | 823B (7 days - 9 hours) | 823B_AB |
| 823B-HO-0025 |  | Works Area 4.18D | milestone | 0d | 2012-12-30 A | 2012-12-30 A |  | 100% |  |  |  |  | finish on 2012-12-30 | 823B (7 days - 9 hours) | 823B_AB |
| 823B-HO-0030 |  | Works Area 4.17A | milestone | 0d | 2013-02-03 A | 2013-02-03 A | 823B-EBC-1090, 823B-EBC-1140, 823B-EBC-1170, 823B-EBC-1210, 823B-EBC-1250, 823B-EBC-1320, 823B-EBC-1100 | 100% |  |  |  |  | finish on 2013-02-03 | 823B (7 days - 9 hours) | 823B_AB |
| 823B-HO-0035 |  | Works Area 4.17B | milestone | 0d | 2013-02-03 A | 2013-02-03 A | 823B-EBC-1090, 823B-EBC-1140, 823B-EBC-1170, 823B-EBC-1210, 823B-EBC-1250, 823B-EBC-1320, 823B-EBC-1100 | 100% |  |  |  |  | finish on 2013-02-03 | 823B (7 days - 9 hours) | 823B_AB |
| 823B-HO-0040 |  | Works Area 4.17C | milestone | 0d | 2013-02-03 A | 2013-02-03 A | 823B-EBC-1090, 823B-EBC-1140, 823B-EBC-1170, 823B-EBC-1210, 823B-EBC-1250, 823B-EBC-1320, 823B-EBC-1100 | 100% |  |  |  |  | finish on 2013-02-03 | 823B (7 days - 9 hours) | 823B_AB |
| 823B-HO-0055 |  | Works Area 4.19C | milestone | 0d | 2013-03-13 A | 2013-03-13 A | 823B-EBC-1090, 823B-EBC-1140, 823B-EBC-1170, 823B-EBC-1210, 823B-EBC-1250, 823B-EBC-1320, 823B-EBC-1100 | 100% |  |  |  |  | finish on 2013-03-13 | 823B (7 days - 9 hours) | 823B_AB |
| 823B-HO-0045 |  | Works Area 4.19A | milestone | 0d | 2013-03-31 A | 2013-03-31 A | 823B-EBC-1090, 823B-EBC-1140, 823B-EBC-1170, 823B-EBC-1210, 823B-EBC-1250, 823B-EBC-1320, 823B-EBC-1100 | 100% |  |  |  |  | finish on 2013-03-31 | 823B (7 days - 9 hours) | 823B_AB |
| 823B-HO-0050 |  | Works Area 4.19B | milestone | 0d | 2013-03-31 A | 2013-03-31 A | 823B-EBC-1090, 823B-EBC-1140, 823B-EBC-1170, 823B-EBC-1210, 823B-EBC-1250, 823B-EBC-1320, 823B-EBC-1100 | 100% |  |  |  |  | finish on 2013-03-31 | 823B (7 days - 9 hours) | 823B_AB |
| 823B-HO-0225 |  | Works Area 9.5 | milestone | 0d | 2013-07-25 A | 2013-07-25 A | 823B-A-TWS-0320 | 100% | 2015-05-10 | 2015-05-10 |  |  | finish on 2015-05-10 | 823B (7 days - 9 hours) | 823B_AB |
| 823B-HO-0105 |  | Works Area 4.20C | milestone | 0d | 2013-10-15 A | 2013-10-15 A | 823B-RDW-1087 | 100% | 2016-03-28 | 2016-03-28 |  |  | finish on 2015-05-10 | 823B (7 days - 9 hours) | 823B_AB |
| 823B-HO-0115 |  | Works Area 4.21B | milestone | 0d | 2013-10-15 A | 2013-10-15 A | 823B-RDW-1087 | 100% | 2016-03-28 | 2016-03-28 |  |  | finish on 2015-05-10 | 823B (7 days - 9 hours) | 823B_AB |
| 823B-HO-0210 |  | Works Area 4.7 (subject to SLG Approval) | milestone | 0d | 2014-03-29 A | 2014-03-29 A | 823B-A-PWS-0130, 823B-ERS-A1-RT-1150 | 100% | 2016-09-01 | 2016-09-01 |  |  |  | 823B (7 days - 9 hours) | 823B_AB |
| 823B-HO-0135 |  | Works Area 4.23B | milestone | 0d | 2014-06-15 A | 2014-06-15 A | 823B-RDW-1087 | 100% | 2016-03-19 | 2016-03-19 |  |  | finish on 2015-05-10 | 823B (7 days - 9 hours) | 823B_AB |
| 823B-HO-0145 |  | Works Area 4.23F | milestone | 0d | 2014-06-15 A | 2014-06-15 A | 823B-RDW-1087 | 100% | 2016-03-19 | 2016-03-19 |  |  | finish on 2015-05-10 | 823B (7 days - 9 hours) | 823B_AB |
| 823B-HO-0100 |  | Works Area 4.20B | milestone | 0d | 2014-07-14 A | 2014-07-14 A | 823B-RDW-1087 | 100% | 2016-03-28 | 2016-03-28 |  |  | finish on 2015-05-10 | 823B (7 days - 9 hours) | 823B_AB |
| 823B-HO-0140 |  | Works Area 4.23D | milestone | 0d | 2014-07-31 A | 2014-07-31 A | 823B-RDW-1087 | 100% | 2016-03-19 | 2016-03-19 |  |  | finish on 2015-05-10 | 823B (7 days - 9 hours) | 823B_AB |
| 823B-HO-0150 |  | Works Area 4.23C | milestone | 0d | 2014-07-31 A | 2014-07-31 A | 823B-RDW-1087 | 100% | 2016-03-19 | 2016-03-19 |  |  | finish on 2015-05-10 | 823B (7 days - 9 hours) | 823B_AB |
| 823B-HO-0130 |  | Works Area 4.23A | milestone | 0d | 2014-08-15 A | 2014-08-15 A | 823B-RDW-1087 | 100% | 2016-03-19 | 2016-03-19 |  |  | finish on 2015-05-10 | 823B (7 days - 9 hours) | 823B_AB |
| 823B-HO-0060 |  | Works Area 4.19E | milestone | 0d | 2014-09-15 A | 2014-09-15 A | 823B-EBC-1090, 823B-EBC-1140, 823B-EBC-1170, 823B-EBC-1210, 823B-EBC-1250, 823B-EBC-1320, 823B-EBC-1100 | 100% | 2015-08-01 | 2015-08-01 |  |  | finish on 2013-03-31 | 823B (7 days - 9 hours) | 823B_AB |
| 823B-HO-0205 |  | Works Area 4.1 (subject to SLG Approval) | milestone | 0d | 2016-07-30 A | 2016-07-30 A | 823B-A-PWS-0130, 823B-ERS-A1-RT-1150 | 100% | 2016-09-01 | 2016-09-01 |  |  |  | 823B (7 days - 9 hours) | 823B_AB |
| 823B-HO-0165 |  | Works Area 4.10 | milestone | 0d | 2016-10-01 | 2016-10-01 | 823B-A-TWS-0040 |  |  |  | -509d | 0d | finish on 2015-05-10 | 823B (7 days - 9 hours) | 823B_AB |
| 823B-HO-0170 |  | Works Area 4.10A | milestone | 0d | 2016-10-01 | 2016-10-01 |  |  |  |  | -570d | 140d | finish on 2015-03-10 | 823B (7 days - 9 hours) | 823B_AB |
| 823B-HO-0175 |  | Works Area 4.11 | milestone | 0d | 2016-10-01 | 2016-10-01 |  |  |  |  | -570d | 140d | finish on 2015-03-10 | 823B (7 days - 9 hours) | 823B_AB |
| 823B-HO-0180 |  | Works Area 4.12B | milestone | 0d | 2016-10-01 | 2016-10-01 |  |  |  |  | -570d | 140d | finish on 2015-03-10 | 823B (7 days - 9 hours) | 823B_AB |
| 823B-HO-0185 |  | Works Area 4.15 | milestone | 0d | 2016-10-01 | 2016-10-01 |  |  |  |  | -570d | 140d | finish on 2015-03-10 | 823B (7 days - 9 hours) | 823B_AB |
| 823B-HO-0190 |  | Works Area 4.15A | milestone | 0d | 2016-10-01 | 2016-10-01 |  |  |  |  | -570d | 140d | finish on 2015-03-10 | 823B (7 days - 9 hours) | 823B_AB |
| 823B-HO-0195 |  | Works Area 4.15B | milestone | 0d | 2016-10-01 | 2016-10-01 |  |  |  |  | -570d | 140d | finish on 2015-03-10 | 823B (7 days - 9 hours) | 823B_AB |
| 823B-HO-0200 |  | Works Area 4.6 (subject to Government Authorities' Approval) | milestone | 0d | 2016-10-01 | 2016-10-01 | 823B-HO-0205, 823B-HO-0210, 823B-A-PWS-0130, 823B-ERS-A1-RT-1150 |  |  |  | 140d | 18d |  | 823B (7 days - 9 hours) | 823B_AB |
| 823B-HO-0215 |  | Works Area 4.13 (subject to SLG Approval) | milestone | 0d | 2016-10-01 | 2016-10-01 | 823B-HO-0165, 823B-A-PWS-0130 |  |  |  | 140d |  |  | 823B (7 days - 9 hours) | 823B_AB |
| 823B-HO-0220 |  | Works Area 4.16 (subject to SLG Approval) | milestone | 0d | 2016-10-01 | 2016-10-01 | 823B-HO-0165, 823B-A-PWS-0130 |  |  |  | 140d |  |  | 823B (7 days - 9 hours) | 823B_AB |
| 823B-HO-0065 |  | Works Area 4.2A | milestone | 0d | 2016-10-31 | 2016-10-31 | 823B-RDW-1087 |  |  |  | -540d | 109d | finish on 2015-05-10 | 823B (7 days - 9 hours) | 823B_AB |
| 823B-HO-0070 |  | Works Area 4.5 | milestone | 0d | 2016-10-31 | 2016-10-31 | 823B-RDW-1087 |  |  |  | -540d | 109d | finish on 2015-05-10 | 823B (7 days - 9 hours) | 823B_AB |
| 823B-HO-0075 |  | Works Area 4.6A | milestone | 0d | 2016-10-31 | 2016-10-31 | 823B-RDW-1087 |  |  |  | -540d | 109d | finish on 2015-05-10 | 823B (7 days - 9 hours) | 823B_AB |
| 823B-HO-0080 |  | Works Area 4.18A | milestone | 0d | 2016-10-31 | 2016-10-31 | 823B-RDW-1087 |  |  |  | -540d | 109d | finish on 2015-05-10 | 823B (7 days - 9 hours) | 823B_AB |
| 823B-HO-0085 |  | Works Area 4.18B | milestone | 0d | 2016-10-31 | 2016-10-31 | 823B-RDW-1087, 823B-RDW-1080 |  |  |  | -540d | 109d | finish on 2015-05-10 | 823B (7 days - 9 hours) | 823B_AB |
| 823B-HO-0090 |  | Works Area 4.19D | milestone | 0d | 2016-10-31 | 2016-10-31 | 823B-RDW-1087 |  |  |  | -540d | 109d | finish on 2015-05-10 | 823B (7 days - 9 hours) | 823B_AB |
| 823B-HO-0095 |  | Works Area 4.20A | milestone | 0d | 2016-10-31 | 2016-10-31 | 823B-RDW-1087 |  |  |  | -540d | 109d | finish on 2015-05-10 | 823B (7 days - 9 hours) | 823B_AB |
| 823B-HO-0110 |  | Works Area 4.21A | milestone | 0d | 2016-10-31 | 2016-10-31 | 823B-RDW-1087, 823B-RDW-1085 |  |  |  | -540d | 109d | finish on 2015-05-10 | 823B (7 days - 9 hours) | 823B_AB |
| 823B-HO-0120 |  | Works Area 4.22A | milestone | 0d | 2016-10-31 | 2016-10-31 | 823B-RDW-1087 |  |  |  | -540d | 109d | finish on 2015-05-10 | 823B (7 days - 9 hours) | 823B_AB |
| 823B-HO-0125 |  | Works Area 4.22B | milestone | 0d | 2016-10-31 | 2016-10-31 | 823B-RDW-1087 |  |  |  | -540d | 109d | finish on 2015-05-10 | 823B (7 days - 9 hours) | 823B_AB |
| 823B-HO-0155 |  | Works Area 4.8 | milestone | 0d | 2017-02-17 | 2017-02-17 | 823B-RDW-1105 |  |  |  | -537d | 0d | finish on 2015-08-30 | 823B (7 days - 9 hours) | 823B_AB |
| 823B-HO-0160 |  | Works Area 4.23E | milestone | 0d | 2017-02-17 | 2017-02-17 | 823B-RDW-1105 |  |  |  | -537d | 0d | finish on 2015-08-30 | 823B (7 days - 9 hours) | 823B_AB |

| ID | WBS | Activity | Type | Duration | Start | Finish | Predecessors | Complete | Total float | Free float | Constraint | Calendar | 823B_As-built |
| --- | --- | --- | --- | --- | --- | --- | --- | --- | --- | --- | --- | --- | --- |
|  | 2 | **from Second Possession** |  |  | 2016-06-01 | 2017-02-17 |  |  |  |  |  |  |  |
| 823B-HO-0240 |  | Works Area 4.17A | milestone | 0d | 2016-06-01 A | 2016-06-01 A | 823B-RDW-1075, 823B-RDW-1095, 823B-RDW-1070 | 100% |  |  | finish on 2015-05-10 | 823B (7 days - 9 hours) | 823B_AB |
| 823B-HO-0245 |  | Works Area 4.17B | milestone | 0d | 2016-06-01 A | 2016-06-01 A | 823B-RDW-1075, 823B-RDW-1095, 823B-RDW-1070 | 100% |  |  | finish on 2015-05-10 | 823B (7 days - 9 hours) | 823B_AB |
| 823B-HO-0250 |  | Works Area 4.17C | milestone | 0d | 2016-06-01 A | 2016-06-01 A | 823B-RDW-1075, 823B-RDW-1095 | 100% |  |  | finish on 2015-05-10 | 823B (7 days - 9 hours) | 823B_AB |
| 823B-HO-0255 |  | Works Area 4.19A | milestone | 0d | 2016-06-01 A | 2016-06-01 A | 823B-RDW-1075, 823B-RDW-1095 | 100% |  |  | finish on 2015-05-10 | 823B (7 days - 9 hours) | 823B_AB |
| 823B-HO-0260 |  | Works Area 4.19B | milestone | 0d | 2016-06-01 A | 2016-06-01 A | 823B-RDW-1075, 823B-RDW-1095 | 100% |  |  | finish on 2015-05-10 | 823B (7 days - 9 hours) | 823B_AB |
| 823B-HO-0265 |  | Works Area4.19C | milestone | 0d | 2016-06-01 A | 2016-06-01 A | 823B-RDW-1075, 823B-RDW-1095 | 100% |  |  | finish on 2015-05-10 | 823B (7 days - 9 hours) | 823B_AB |
| 823B-HO-0270 |  | Works Area 4.19E | milestone | 0d | 2016-06-01 A | 2016-06-01 A | 823B-RDW-1075, 823B-RDW-1095 | 100% |  |  | finish on 2015-05-10 | 823B (7 days - 9 hours) | 823B_AB |
| 823B-HO-0275 |  | Works Area 4.18C | milestone | 0d | 2016-06-01 A | 2016-06-01 A | 823B-RDW-1075, 823B-RDW-1095 | 100% |  |  | finish on 2015-05-10 | 823B (7 days - 9 hours) | 823B_AB |
| 823B-HO-0280 |  | Works Area 4.8A | milestone | 0d | 2017-02-17 | 2017-02-17 | 823B-RDW-1105 |  | -537d | 0d | finish on 2015-08-30 | 823B (7 days - 9 hours) | 823B_AB |
| 823B-HO-0285 |  | Works Area 4.8E | milestone | 0d | 2017-02-17 | 2017-02-17 | 823B-RDW-1105 |  | -537d | 0d | finish on 2015-08-30 | 823B (7 days - 9 hours) | 823B_AB |
| 823B-HO-0290 |  | Works Area 4.18D | milestone | 0d | 2017-02-17 | 2017-02-17 | 823B-RDW-1105 |  | -537d | 0d | finish on 2015-08-30 | 823B (7 days - 9 hours) | 823B_AB |
|  | 7 | **PROGRAMME DATA** |  |  | 2011-08-28 | 2016-10-01 |  |  |  |  |  |  |  |
|  | 01 | **Schedule of Power On Dates** |  |  | 2013-12-02 | 2016-10-01 |  |  |  |  |  |  |  |
| 823B-PD-10010 |  | Shek Kong Feeder Station | milestone | 0d | 2013-12-02 A | 2013-12-02 A | 823B-H-SHK-Z1-1330, 823B-H-SHK-Z1-1370, 823B-H-SHK-Z2-1330, 823B-H-SHK-A-1010, 823B-H-SHK-A-1020, 823B-H-SHK-A-1030, 823B-H-SHK-A-1040, 823B-H-SHK-A-1050, 823B-H-SHK-A-1060, 823B-H-SHK-A-1070, 823B-H-SHK-A-1080, 823B-H-SHK-A-1090, 823B-H-SHK-A-1100, 823B-H-SHK-A-1110, 823B-H-SHK-A-1120, 823B-H-SHK-A-1130 | 100% |  |  | start on 2013-12-02 | 823B (7 days - 9 hours) | 823B_AB |
| 823B-PD-10080 |  | 132kV / 25kV CLP Power On | milestone | 0d | 2014-02-03 A | 2014-02-03 A | 823B-SFE-1030 | 100% |  |  | start on 2014-02-03 | 823B (7 days - 9 hours) | 823B_AB |
| 823B-PD-10020 |  | ERS Plant Buildings | milestone | 0d | 2016-10-01 | 2016-10-01 | 823B-ERS-A2-PBN-2000, 823B-ERS-A2-PBN-3000, 823B-ERS-A6-PBS-2000, 823B-ERS-A6-PBS-3000 |  | -866d | 140d | start on 2014-05-19 | 823B (7 days - 9 hours) | 823B_AB |
| 823B-PD-10030 |  | Main Building | milestone | 0d | 2016-10-01 | 2016-10-01 | 823B-F-SMB-A-1100, 823B-F-SMB-A-1140, 823B-F-SMB-A-2140, 823B-F-SMB-A-2100, 823B-F-SMB-A-3150, 823B-F-SMB-A-3120 |  | -943d | 140d | start on 2014-03-03 | 823B (7 days - 9 hours) | 823B_AB |
| 823B-PD-10040 |  | Infrastructure, Building Maintenance and P'Way Building | milestone | 0d | 2016-10-01 | 2016-10-01 | 823B-G-IBP-S-1220, 823B-G-IBP-S-1230, 823B-G-IBP-S-1240, 823B-G-IBP-A-2170, 823B-G-IBP-A-2180, 823B-G-IBP-A-2190, 823B-G-IBP-A-2360, 823B-G-IBP-A-2370, 823B-G-IBP-A-2380, 823B-G-IBP-A-2390, 823B-G-IBP-A-2400, 823B-G-IBP-A-2410, 823B-G-IBP-A-2420, 823B-G-IBP-A-2430, 823B-G-IBP-A-2440, 823B-G-IBP-A-2450, 823B-G-IBP-A-2460, 823B-G-IBP-A-2470, 823B-G-IBP-A-2480, 823B-G-IBP-A-2490, 823B-G-IBP-A-2500 |  | -943d | 140d | start on 2014-03-03 | 823B (7 days - 9 hours) | 823B_AB |
| 823B-PD-10050 |  | Dangerous Goods Store | milestone | 0d | 2016-10-01 | 2016-10-01 | 823B-H-DGS-A-1010, 823B-H-DGS-A-1020, 823B-H-DGS-A-1030, 823B-H-DGS-A-1040, 823B-H-DGS-A-1050, 823B-H-DGS-A-1060, 823B-H-DGS-A-1070, 823B-H-DGS-A-1080, 823B-H-DGS-A-1090, 823B-H-DGS-A-1100, 823B-H-DGS-A-1110, 823B-H-DGS-A-1120 |  | -852d | 140d | start on 2014-06-02 | 823B (7 days - 9 hours) | 823B_AB |
| 823B-PD-10060 |  | Train Wash Building and Train Wash Plant | milestone | 0d | 2016-10-01 | 2016-10-01 | 823B-H-TWP-A-1010, 823B-H-TWP-A-1020, 823B-H-TWP-A-1030, 823B-H-TWP-A-1040, 823B-H-TWP-A-1050, 823B-H-TWP-A-1060, 823B-H-TWP-A-1070, 823B-H-TWP-A-1080, 823B-H-TWP-A-1090 |  | -852d | 140d | start on 2014-06-02 | 823B (7 days - 9 hours) | 823B_AB |
| 823B-PD-10070 |  | Diesel Filling Station | milestone | 0d | 2016-10-01 | 2016-10-01 | 823B-H-DFS-S-1030, 823B-H-DFS-S-1040, 823B-H-DFS-S-1050, 823B-H-DFS-S-1060, 823B-H-DFS-S-1070, 823B-H-DFS-S-1080, 823B-H-DFS-A-2010 |  | -852d | 140d | start on 2014-06-02 | 823B (7 days - 9 hours) | 823B_AB |
| 823B-PD-10090 |  | Overhead Lines Power On for stillage tracks and Running Maintenance Shed | milestone | 0d | 2016-10-01 | 2016-10-01 | 823B-SFE-1030, 823B-STR-1030 |  | -824d | 140d | start on 2014-06-30 | 823B (7 days - 9 hours) | 823B_AB |
| 823B-PD-10100 |  | Overhead Lines Power On for mainline and SSS | milestone | 0d | 2016-10-01 | 2016-10-01 | 823B-SFE-1030, 823B-STR-1020, 823B-STR-1010 |  | -733d | 140d | start on 2014-09-29 | 823B (7 days - 9 hours) | 823B_AB |

| ID | WBS | Activity | Type | Duration | Start | Finish | Predecessors | Complete | Planned start | Planned finish | Constraint | Calendar | 823B_As-built |
| --- | --- | --- | --- | --- | --- | --- | --- | --- | --- | --- | --- | --- | --- |
|  | 02 | **Interface with Contract 823A (Works to be completed by C823A)** |  |  | 2011-08-28 | 2013-03-31 |  |  |  |  |  |  |  |
| 823B-PD-20010 |  | Complete temporary diversion of Wang Toi Shan Shan Tsuen Road | milestone | 0d | 2011-08-28 A | 2011-08-28 A |  | 100% |  |  | finish on 2011-12-18 | 823B (7 days - 9 hours) | 823B_AB |
| 823B-PD-20020 |  | Complete East Culvert connection to the Kam Tin Nullah | milestone | 0d | 2013-03-31 A | 2013-03-31 A | 823B-EBC-1580, 823B-EBC-1570, 823B-EBC-1550, 823B-EBC-1520, 823B-EBC-1480, 823B-EBC-1460, 823B-EBC-1435, 823B-EBC-1380, 823B-EBC-1360, 823B-EBC-1330, 823B-EBC-1310, 823B-EBC-1290, 823B-EBC-1260, 823B-EBC-1240, 823B-EBC-1100 | 100% |  |  | finish on 2013-03-31 | 823B (7 days - 9 hours) | 823B_AB |
|  | 03 | **Utility Connections** |  |  | 2014-10-31 | 2016-03-01 |  |  |  |  |  |  |  |
| 823B-PD-30010 |  | Complete all external water works for ERS Plant Buildings within the Site and connect to government water mains | milestone | 0d | 2014-10-31 A | 2014-10-31 A |  | 100% | 2014-09-30 | 2014-09-30 | finish on 2014-05-04 | 823B (7 days - 9 hours) | 823B_AB |
| 823B-PD-30020 |  | Complete all external water works for other buildings within the Site and connect to government water mains | milestone | 0d | 2016-03-01 A | 2016-03-01 A |  | 100% |  |  | finish on 2014-06-29 | 823B (7 days - 9 hours) | 823B_AB |
| 823B-PD-30030 |  | Complete all external telephone drawpits and ducts within the Site | milestone | 0d | 2016-03-01 A | 2016-03-01 A |  | 100% |  |  | finish on 2014-06-01 | 823B (7 days - 9 hours) | 823B_AB |
|  | 04 | **CLP Access Dates Schedule** |  |  | 2013-06-10 | 2014-09-15 |  |  |  |  |  |  |  |
| 823B-PD-40010 |  | Shek Kong Feeder Station - Power Supply Equipment Rooms | milestone | 0d | 2013-06-10 A | 2013-06-10 A | 823B-H-SHK-A-1010, 823B-H-SHK-A-1020, 823B-H-SHK-A-1030, 823B-H-SHK-A-1040, 823B-H-SHK-A-1050, 823B-H-SHK-A-1060, 823B-H-SHK-A-1070, 823B-H-SHK-A-1080, 823B-H-SHK-A-1090, 823B-H-SHK-A-1100, 823B-H-SHK-A-1110, 823B-H-SHK-A-1120, 823B-H-SHK-A-1130 | 100% |  |  | start on 2013-06-10 | 823B (7 days - 9 hours) | 823B_AB |
| 823B-PD-40040 |  | Infrastructure, Building Maintenance and Pway Building - Power Supply Equipment Rooms | milestone | 0d | 2013-07-29 A | 2013-07-29 A | 823B-G-IBP-A-2330, 823B-G-IBP-A-2340, 823B-G-IBP-A-2350, 823B-G-IBP-A-2200, 823B-G-IBP-A-2210, 823B-G-IBP-A-2220, 823B-G-IBP-A-2140, 823B-G-IBP-A-2150, 823B-G-IBP-A-2160 | 100% |  |  | start on 2013-07-29 | 823B (7 days - 9 hours) | 823B_AB |
| 823B-PD-40030 |  | Main Buildings - Power Supply Equipment Rooms | milestone | 0d | 2013-09-02 A | 2013-09-02 A | 823B-F-SMB-A-3100, 823B-F-SMB-A-3110, 823B-F-SMB-A-2090, 823B-F-SMB-A-2110, 823B-F-SMB-A-2080, 823B-F-SMB-A-1080, 823B-F-SMB-A-1090, 823B-F-SMB-A-1110, 823B-F-SMB-A-1120 | 100% |  |  | start on 2013-09-02 | 823B (7 days - 9 hours) | 823B_AB |
| 823B-PD-40020 |  | ERS Plant Buildings - Power Supply Equipment Rooms | milestone | 0d | 2014-09-15 A | 2014-09-15 A | 823B-ERS-A6-PBS-2000, 823B-ERS-A2-PBN-2000 | 100% | 2014-10-30 | 2014-10-30 | start on 2014-03-17 | 823B (7 days - 9 hours) | 823B_AB |
|  | 05 | **Delivery of Rolling Stocks** |  |  | 2014-02-24 | 2014-10-05 |  |  |  |  |  |  |  |
| 823B-PD-50010 |  | Delivery of Rolling Stock by Contract 840 |  | 224d | 2014-02-24 A | 2014-10-05 A |  | 100% |  |  | start on or after 2014-02-24; finish on or before 2014-10-05 | 823B (7 days - 9 hours) | 823B_AB |
|  | 06 | **Engineer's Accomodation** |  |  | 2012-07-02 | 2012-10-07 |  |  |  |  |  |  |  |
| 823B-PD-60010 |  | Complete Engineer's Office and provide office furniture and equipment |  | 98d | 2012-07-02 A | 2012-10-07 A |  | 100% |  |  | start on or after 2011-01-03 | 823B (7 days - 9 hours) | 823B_AB |
|  | 07 | **Sewerage System** |  |  | 2014-01-27 | 2015-12-07 |  |  |  |  |  |  |  |
| 823B-PD-70020 |  | Provide chemical toilet at Shek Kong Feeder Station in Week 05/2014 |  | 7d | 2014-01-27 A | 2014-02-02 A |  | 100% |  |  | start on or after 2014-01-27 | 823B (7 days - 9 hours) | 823B_AB |
| 823B-PD-70010 |  | Commision the Sewarage System within SSS in Week 13/2014 |  | 7d | 2015-12-01 A | 2015-12-07 A |  | 100% |  |  | start on or after 2014-03-24 | 823B (7 days - 9 hours) | 823B_AB |
|  | 8 | **ACCESS DATES FOR DESIGNATED CONTRACTORS** |  |  | 2012-12-03 | 2016-10-01 |  |  |  |  |  |  |  |
|  | 01 | **827 - Supply and Installation of Cross Passage Doors** |  |  | 2014-03-10 | 2016-03-01 |  |  |  |  |  |  |  |
| 823B-A-ADC-0020 |  | ERS, northern and southern cut-and-cover tunnels, down tracks | milestone | 0d | 2014-03-10 A | 2014-03-10 A |  | 100% | 2015-03-01 | 2015-03-01 | start on 2014-02-24 | 823B (7 days - 9 hours) | 823B_AB |
| 823B-A-ADC-0010 |  | ERS, northern and southern cut-and-cover tunnels, up tracks | milestone | 0d | 2016-03-01 A | 2016-03-01 A |  | 100% |  |  | start on 2014-01-06 | 823B (7 days - 9 hours) | 823B_AB |
|  | 02 | **830 - Trackwork and Overhead Line System** |  |  | 2013-03-11 | 2014-09-30 |  |  |  |  |  |  |  |
| 823B-A-ADC-0080 |  | Shek Kong Feeder Station | milestone | 0d | 2013-03-11 A | 2013-03-11 A |  | 100% |  |  | start on 2013-03-11 | 823B (7 days - 9 hours) | 823B_AB |
| 823B-A-ADC-0030 |  | ERS Running Tunnel Area 3-5 (CH123+800 to 124+120), both up and down tracks | milestone | 0d | 2013-04-01 A | 2013-04-01 A |  | 100% |  |  | start on 2013-04-01 | 823B (7 days - 9 hours) | 823B_AB |
| 823B-A-ADC-0040 |  | Running Maintenance Shed, Rail Stillage & FBW Steel Portal, S&C Assembly Storage & Loco Shed w/in area PA1 as in Annex 1 | milestone | 0d | 2013-05-27 A | 2013-05-27 A |  | 100% |  |  | start on 2013-05-27 | 823B (7 days - 9 hours) | 823B_AB |
| 823B-A-ADC-0060 |  | SSS - Area P2.1 as shown in the Annex 6.1 | milestone | 0d | 2013-07-29 A | 2013-07-29 A |  | 100% |  |  | start on 2013-07-29 | 823B (7 days - 9 hours) | 823B_AB |
| 823B-A-ADC-0090 |  | Infrastructure, Building Maintenance & Pway Building | milestone | 0d | 2013-07-29 A | 2013-07-29 A |  | 100% |  |  | start on 2013-07-29 | 823B (7 days - 9 hours) | 823B_AB |
| 823B-A-ADC-0070 |  | SSS - Area P3.1 as shown in the Annex 6.1 | milestone | 0d | 2013-08-20 A | 2013-08-20 A |  | 100% | 2013-08-12 | 2013-08-12 | start on 2013-08-12 | 823B (7 days - 9 hours) | 823B_AB |
| 823B-A-ADC-0031 |  | ERS Running Tunnel Area 6-11, both up and down tracks | milestone | 0d | 2013-10-01 A | 2013-10-01 A |  | 100% | 2013-08-05 | 2013-08-05 | start on 2013-08-05 | 823B (7 days - 9 hours) | 823B_AB |
| 823B-A-ADC-0075 |  | SSS - Area P3.2 as shown in the Annex 6.1 | milestone | 0d | 2013-12-31 A | 2013-12-31 A |  | 100% | 2013-11-18 | 2013-11-18 | start on 2013-11-18 | 823B (7 days - 9 hours) | 823B_AB |
| 823B-A-ADC-0032 |  | ERS Running Tunnel Area 1-2, both up and down tracks | milestone | 0d | 2014-04-08 A | 2014-04-08 A |  | 100% | 2014-04-01 | 2014-04-01 | start on 2013-08-05 | 823B (7 days - 9 hours) | 823B_AB |
| 823B-A-ADC-0050 |  | Approach tunnel and the shunt neck from portal to southern contract limit | milestone | 0d | 2014-08-08 A | 2014-08-08 A |  | 100% | 2014-08-31 | 2014-08-31 | start on 2013-10-07 | 823B (7 days - 9 hours) | 823B_AB |
| 823B-A-ADC-0065 |  | SSS - Area P2.2 and Works Area 4.19E as shown in the Annex 6.1 | milestone | 0d | 2014-09-30 A | 2014-09-30 A |  | 100% | 2014-08-31 | 2014-08-31 | start on 2013-09-02 | 823B (7 days - 9 hours) | 823B_AB |

| ID | WBS | Activity | Type | Duration | Start | Finish | Complete | Total float | Free float | Constraint | Calendar | 823B_As-built |
| --- | --- | --- | --- | --- | --- | --- | --- | --- | --- | --- | --- | --- |
|  | 03 | **840 - Rolling Stocks** |  |  | 2014-02-03 | 2016-03-01 |  |  |  |  |  |  |
| 823B-A-ADC-0110 |  | Running Maintenance Shed, Rail Stillages, FBW & Steel Portal, S&C Assembly Storage and Loco Shed | milestone | 0d | 2014-02-03 A | 2014-02-03 A | 100% |  |  | start on 2014-02-03 | 823B (7 days - 9 hours) | 823B_AB |
| 823B-A-ADC-0100 |  | All track areas in SSS | milestone | 0d | 2016-03-01 A | 2016-03-01 A | 100% |  |  | start on 2014-03-10 | 823B (7 days - 9 hours) | 823B_AB |
|  | 04 | **841A - Signalling System - Trackside Equipment** |  |  | 2013-12-02 | 2016-10-01 |  |  |  |  |  |  |
| 823B-A-ADC-0170 |  | Main Building - SER, SSS Control Centre | milestone | 0d | 2013-12-02 A | 2013-12-02 A | 100% |  |  | start on 2013-12-02 | 823B (7 days - 9 hours) | 823B_AB |
| 823B-A-ADC-0130 |  | Running Maintenance Shed, Rail Stillages, FBW & Steel Portal, S&C Assembly Storage and Loco Shed | milestone | 0d | 2014-02-03 A | 2014-02-03 A | 100% |  |  | start on 2014-02-03 | 823B (7 days - 9 hours) | 823B_AB |
| 823B-A-ADC-0120 |  | ERS, northern and southern cut-and-cover tunnels, up tracks | milestone | 0d | 2016-10-01 | 2016-10-01 |  | -999d | 140d | start on 2014-01-06 | 823B (7 days - 9 hours) | 823B_AB |
| 823B-A-ADC-0125 |  | ERS, northern and southern cut-and-cover tunnels, down tracks | milestone | 0d | 2016-10-01 | 2016-10-01 |  | -950d | 140d | start on 2014-02-24 | 823B (7 days - 9 hours) | 823B_AB |
| 823B-A-ADC-0140 |  | All track areas in SSS | milestone | 0d | 2016-10-01 | 2016-10-01 |  | -936d | 140d | start on 2014-03-10 | 823B (7 days - 9 hours) | 823B_AB |
| 823B-A-ADC-0145 |  | Approach tunnel, down track, from portal to southern contract limit | milestone | 0d | 2016-10-01 | 2016-10-01 |  | -936d | 140d | start on 2014-03-10 | 823B (7 days - 9 hours) | 823B_AB |
| 823B-A-ADC-0150 |  | Approach tunnel and the shunt neckup track, from portal to southern contract limit | milestone | 0d | 2016-10-01 | 2016-10-01 |  | -859d | 140d | start on 2014-05-26 | 823B (7 days - 9 hours) | 823B_AB |
| 823B-A-ADC-0160 |  | ERS Plant Buildings (North and South) - SER | milestone | 0d | 2016-10-01 | 2016-10-01 |  | -929d | 140d | start on 2014-03-17 | 823B (7 days - 9 hours) | 823B_AB |
|  | 05 | **841B - Signalling System - Train Borne Equipment** |  |  | 2013-12-02 | 2016-10-01 |  |  |  |  |  |  |
| 823B-A-ADC-0230 |  | Main Building - SER, SSS Control Centre | milestone | 0d | 2013-12-02 A | 2013-12-02 A | 100% |  |  | start on 2013-12-02 | 823B (7 days - 9 hours) | 823B_AB |
| 823B-A-ADC-0180 |  | ERS, northern and southern cut-and-cover tunnels, up tracks | milestone | 0d | 2016-10-01 | 2016-10-01 |  | -999d | 140d | start on 2014-01-06 | 823B (7 days - 9 hours) | 823B_AB |
| 823B-A-ADC-0185 |  | ERS, northern and southern cut-and-cover tunnels, down tracks | milestone | 0d | 2016-10-01 | 2016-10-01 |  | -950d | 140d | start on 2014-02-24 | 823B (7 days - 9 hours) | 823B_AB |
| 823B-A-ADC-0190 |  | All track areas in SSS | milestone | 0d | 2016-10-01 | 2016-10-01 |  | -936d | 140d | start on 2014-03-10 | 823B (7 days - 9 hours) | 823B_AB |
| 823B-A-ADC-0200 |  | Approach tunnel, down track, from portal to southern contract limit | milestone | 0d | 2016-10-01 | 2016-10-01 |  | -936d | 140d | start on 2014-03-10 | 823B (7 days - 9 hours) | 823B_AB |
| 823B-A-ADC-0210 |  | Approach tunnel and the shunt neckup track, from portal to southern contract limit | milestone | 0d | 2016-10-01 | 2016-10-01 |  | -859d | 140d | start on 2014-05-26 | 823B (7 days - 9 hours) | 823B_AB |
| 823B-A-ADC-0220 |  | ERS Plant Buildings - SER | milestone | 0d | 2016-10-01 | 2016-10-01 |  | -929d | 140d | start on 2014-03-17 | 823B (7 days - 9 hours) | 823B_AB |
|  | 06 | **843 - Tunnel Environmental Control System** |  |  | 2016-10-01 | 2016-10-01 |  |  |  |  |  |  |
| 823B-A-ADC-0240 |  | ERS Plant Building - TVF Room, Tunnel ECS Control Room, Boost Up Transformer Room, Air Compressor and Receiver Room | milestone | 0d | 2016-10-01 | 2016-10-01 |  | -929d | 140d | start on 2014-03-17 | 823B (7 days - 9 hours) | 823B_AB |
|  | 07 | **844 - 11 kV Power Distribution** |  |  | 2013-03-11 | 2016-10-01 |  |  |  |  |  |  |
| 823B-A-ADC-0290 |  | Shek Kong Feeder Station | milestone | 0d | 2013-03-11 A | 2013-03-11 A | 100% |  |  | start on 2013-03-11 | 823B (7 days - 9 hours) | 823B_AB |
| 823B-A-ADC-0300 |  | Infrastructure, Building Maintenance & Pway Building - Power Supply Electrical Rooms | milestone | 0d | 2013-07-29 A | 2013-07-29 A | 100% |  |  | start on 2013-07-29 | 823B (7 days - 9 hours) | 823B_AB |
| 823B-A-ADC-0280 |  | Main Building - Power Supply Electrical Rooms | milestone | 0d | 2013-09-02 A | 2013-09-02 A | 100% |  |  | start on 2013-09-02 | 823B (7 days - 9 hours) | 823B_AB |
| 823B-A-ADC-0250 |  | ERS, northern and southern cut-and-cover tunnels, up tracks | milestone | 0d | 2016-10-01 | 2016-10-01 |  | -999d | 140d | start on 2014-01-06 | 823B (7 days - 9 hours) | 823B_AB |
| 823B-A-ADC-0255 |  | ERS, northern and southern cut-and-cover tunnels, down tracks | milestone | 0d | 2016-10-01 | 2016-10-01 |  | -950d | 140d | start on 2014-02-24 | 823B (7 days - 9 hours) | 823B_AB |
| 823B-A-ADC-0260 |  | Approach tunnel, down track, from portal to southern contract limit | milestone | 0d | 2016-10-01 | 2016-10-01 |  | -936d | 140d | start on 2014-03-10 | 823B (7 days - 9 hours) | 823B_AB |
| 823B-A-ADC-0265 |  | Approach tunnel and the shunt neckup track, from portal to southern contract limit | milestone | 0d | 2016-10-01 | 2016-10-01 |  | -859d | 140d | start on 2014-05-26 | 823B (7 days - 9 hours) | 823B_AB |
| 823B-A-ADC-0270 |  | ERS Plant Buildings - Power Supply Electrical Rooms | milestone | 0d | 2016-10-01 | 2016-10-01 |  | -929d | 140d | start on 2014-03-17 | 823B (7 days - 9 hours) | 823B_AB |

| ID | WBS | Activity | Type | Duration | Start | Finish | Complete | Total float | Free float | Constraint | Calendar | 823B_As-built |
| --- | --- | --- | --- | --- | --- | --- | --- | --- | --- | --- | --- | --- |
|  | 08 | **845 - Traction Power Supply System** |  |  | 2013-03-11 | 2016-10-01 |  |  |  |  |  |  |
| 823B-A-ADC-0330 |  | Shek Kong Feeder Station | milestone | 0d | 2013-03-11 A | 2013-03-11 A | 100% |  |  | start on 2013-03-11 | 823B (7 days - 9 hours) | 823B_AB |
| 823B-A-ADC-0340 |  | Infrastructure, Building Maintenance & Pway Building - Power Supply Electrical Rooms | milestone | 0d | 2013-07-29 A | 2013-07-29 A | 100% |  |  | start on 2013-07-29 | 823B (7 days - 9 hours) | 823B_AB |
| 823B-A-ADC-0320 |  | Main Building - Power Supply Electrical Rooms | milestone | 0d | 2013-09-02 A | 2013-09-02 A | 100% |  |  | start on 2013-09-02 | 823B (7 days - 9 hours) | 823B_AB |
| 823B-A-ADC-0310 |  | ERS Plant Buildings - Power Supply Electrical Rooms | milestone | 0d | 2016-10-01 | 2016-10-01 |  | -929d | 140d | start on 2014-03-17 | 823B (7 days - 9 hours) | 823B_AB |
|  | 09 | **846 - Trackside Auxiliaries** |  |  | 2016-10-01 | 2016-10-01 |  |  |  |  |  |  |
| 823B-A-ADC-0350 |  | ERS, northern and southern cut-and-cover tunnels, up tracks | milestone | 0d | 2016-10-01 | 2016-10-01 |  | -999d | 140d | start on 2014-01-06 | 823B (7 days - 9 hours) | 823B_AB |
| 823B-A-ADC-0355 |  | ERS, northern and southern cut-and-cover tunnels, down tracks | milestone | 0d | 2016-10-01 | 2016-10-01 |  | -950d | 140d | start on 2014-02-24 | 823B (7 days - 9 hours) | 823B_AB |
| 823B-A-ADC-0360 |  | Approach tunnel, down track, from portal to southern contract limit | milestone | 0d | 2016-10-01 | 2016-10-01 |  | -936d | 140d | start on 2014-03-10 | 823B (7 days - 9 hours) | 823B_AB |
| 823B-A-ADC-0365 |  | Approach tunnel and the shunt neckup track, from portal to southern contract limit | milestone | 0d | 2016-10-01 | 2016-10-01 |  | -859d | 140d | start on 2014-05-26 | 823B (7 days - 9 hours) | 823B_AB |
| 823B-A-ADC-0370 |  | ERS Plant Buildings - Trackside LV Switch Room | milestone | 0d | 2016-10-01 | 2016-10-01 |  | -929d | 140d | start on 2014-03-17 | 823B (7 days - 9 hours) | 823B_AB |
|  | 10 | **847 - Lifts** |  |  | 2013-09-02 | 2016-10-01 |  |  |  |  |  |  |
| 823B-A-ADC-0390 |  | Main Building - Lift Shaft | milestone | 0d | 2013-09-02 A | 2013-09-02 A | 100% |  |  | start on 2013-09-02 | 823B (7 days - 9 hours) | 823B_AB |
| 823B-A-ADC-0380 |  | ERS Plant Buildings - Lift Shaft | milestone | 0d | 2016-10-01 | 2016-10-01 |  | -929d | 140d | start on 2014-03-17 | 823B (7 days - 9 hours) | 823B_AB |
|  | 11 | **849 - Radio Communications System** |  |  | 2013-06-10 | 2016-10-01 |  |  |  |  |  |  |
| 823B-A-ADC-0460 |  | Shek Kong Feeder Station | milestone | 0d | 2013-06-10 A | 2013-06-10 A | 100% |  |  | start on 2013-06-10 | 823B (7 days - 9 hours) | 823B_AB |
| 823B-A-ADC-0470 |  | Infrastructure, Building Maintenance & Pway Building | milestone | 0d | 2013-10-28 A | 2013-10-28 A | 100% |  |  | start on 2013-10-28 | 823B (7 days - 9 hours) | 823B_AB |
| 823B-A-ADC-0450 |  | Main Building - TER, SER, Corridors and roof | milestone | 0d | 2013-12-02 A | 2013-12-02 A | 100% |  |  | start on 2013-12-02 | 823B (7 days - 9 hours) | 823B_AB |
| 823B-A-ADC-0430 |  | Running Maintenance Shed, Rail Stillages, FBW & Steel Portal, S&C Assembly Storage and Loco Shed | milestone | 0d | 2014-02-03 A | 2014-02-03 A | 100% |  |  | start on 2014-02-03 | 823B (7 days - 9 hours) | 823B_AB |
| 823B-A-ADC-0400 |  | ERS, northern and southern cut-and-cover tunnels, up tracks | milestone | 0d | 2016-10-01 | 2016-10-01 |  | -999d | 140d | start on 2014-01-06 | 823B (7 days - 9 hours) | 823B_AB |
| 823B-A-ADC-0405 |  | ERS, northern and southern cut-and-cover tunnels, down tracks | milestone | 0d | 2016-10-01 | 2016-10-01 |  | -950d | 140d | start on 2014-02-24 | 823B (7 days - 9 hours) | 823B_AB |
| 823B-A-ADC-0410 |  | All track areas in SSS | milestone | 0d | 2016-10-01 | 2016-10-01 |  | -936d | 140d | start on 2014-03-10 | 823B (7 days - 9 hours) | 823B_AB |
| 823B-A-ADC-0420 |  | Approach tunnel, down track, from portal to southern contract limit | milestone | 0d | 2016-10-01 | 2016-10-01 |  | -936d | 140d | start on 2014-03-10 | 823B (7 days - 9 hours) | 823B_AB |
| 823B-A-ADC-0425 |  | Approach tunnel and the shunt neckup track, from portal to southern contract limit | milestone | 0d | 2016-10-01 | 2016-10-01 |  | -859d | 140d | start on 2014-05-26 | 823B (7 days - 9 hours) | 823B_AB |
| 823B-A-ADC-0440 |  | ERS Plant Buildings - TER, SER, Corridors and roof | milestone | 0d | 2016-10-01 | 2016-10-01 |  | -929d | 140d | start on 2014-03-17 | 823B (7 days - 9 hours) | 823B_AB |
| 823B-A-ADC-0480 |  | Train Wash Building & Train Wash Plant | milestone | 0d | 2016-10-01 | 2016-10-01 |  | -943d | 140d | start on 2014-03-03 | 823B (7 days - 9 hours) | 823B_AB |
| 823B-A-ADC-0490 |  | Security Operation Centre | milestone | 0d | 2016-10-01 | 2016-10-01 |  | -943d | 140d | start on 2014-03-03 | 823B (7 days - 9 hours) | 823B_AB |

| ID | WBS | Activity | Type | Duration | Start | Finish | Complete | Total float | Free float | Constraint | Calendar | 823B_As-built |
| --- | --- | --- | --- | --- | --- | --- | --- | --- | --- | --- | --- | --- |
|  | 12 | **850 - Passenger Mobile Communications Systems** |  |  | 2016-10-01 | 2016-10-01 |  |  |  |  |  |  |
| 823B-A-ADC-0500 |  | ERS, northern and southern cut-and-cover tunnels, up tracks | milestone | 0d | 2016-10-01 | 2016-10-01 |  | -999d | 140d | start on 2014-01-06 | 823B (7 days - 9 hours) | 823B_AB |
| 823B-A-ADC-0505 |  | ERS, northern and southern cut-and-cover tunnels, down tracks | milestone | 0d | 2016-10-01 | 2016-10-01 |  | -950d | 140d | start on 2014-02-24 | 823B (7 days - 9 hours) | 823B_AB |
| 823B-A-ADC-0510 |  | Approach tunnel, down track, from portal to southern contract limit | milestone | 0d | 2016-10-01 | 2016-10-01 |  | -936d | 140d | start on 2014-03-10 | 823B (7 days - 9 hours) | 823B_AB |
| 823B-A-ADC-0515 |  | Approach tunnel and the shunt neckup track, from portal to southern contract limit | milestone | 0d | 2016-10-01 | 2016-10-01 |  | -859d | 140d | start on 2014-05-26 | 823B (7 days - 9 hours) | 823B_AB |
|  | 13 | **851 - Fixed Communication System** |  |  | 2013-06-10 | 2016-10-01 |  |  |  |  |  |  |
| 823B-A-ADC-0580 |  | Shek Kong Feeder Station | milestone | 0d | 2013-06-10 A | 2013-06-10 A | 100% |  |  | start on 2013-06-10 | 823B (7 days - 9 hours) | 823B_AB |
| 823B-A-ADC-0590 |  | Infrastructure, Building Maintenance & Pway Building | milestone | 0d | 2013-10-28 A | 2013-10-28 A | 100% |  |  | start on 2013-10-28 | 823B (7 days - 9 hours) | 823B_AB |
| 823B-A-ADC-0570 |  | Main Building | milestone | 0d | 2013-12-02 A | 2013-12-02 A | 100% |  |  | start on 2013-12-02 | 823B (7 days - 9 hours) | 823B_AB |
| 823B-A-ADC-0550 |  | Running Maintenance Shed, Rail Stillages, FBW & Steel Portal, S&C Assembly Storage and Loco Shed | milestone | 0d | 2014-02-03 A | 2014-02-03 A | 100% |  |  | start on 2014-02-03 | 823B (7 days - 9 hours) | 823B_AB |
| 823B-A-ADC-0520 |  | ERS, northern and southern cut-and-cover tunnels, up tracks | milestone | 0d | 2016-10-01 | 2016-10-01 |  | -999d | 140d | start on 2014-01-06 | 823B (7 days - 9 hours) | 823B_AB |
| 823B-A-ADC-0525 |  | ERS, northern and southern cut-and-cover tunnels, down tracks | milestone | 0d | 2016-10-01 | 2016-10-01 |  | -950d | 140d | start on 2014-02-24 | 823B (7 days - 9 hours) | 823B_AB |
| 823B-A-ADC-0530 |  | All track areas in SSS | milestone | 0d | 2016-10-01 | 2016-10-01 |  | -936d | 140d | start on 2014-03-10 | 823B (7 days - 9 hours) | 823B_AB |
| 823B-A-ADC-0540 |  | Approach tunnel, down track, from portal to southern contract limit | milestone | 0d | 2016-10-01 | 2016-10-01 |  | -936d | 140d | start on 2014-03-10 | 823B (7 days - 9 hours) | 823B_AB |
| 823B-A-ADC-0545 |  | Approach tunnel and the shunt neckup track, from portal to southern contract limit | milestone | 0d | 2016-10-01 | 2016-10-01 |  | -859d | 140d | start on 2014-05-26 | 823B (7 days - 9 hours) | 823B_AB |
| 823B-A-ADC-0560 |  | ERS Plant Buildings - TER, SER, Corridors and roof | milestone | 0d | 2016-10-01 | 2016-10-01 |  | -929d | 140d | start on 2014-03-17 | 823B (7 days - 9 hours) | 823B_AB |
| 823B-A-ADC-0600 |  | Dangerous Goods Store | milestone | 0d | 2016-10-01 | 2016-10-01 |  | -943d | 140d | start on 2014-03-03 | 823B (7 days - 9 hours) | 823B_AB |
| 823B-A-ADC-0610 |  | Train Wash Building & Train Wash Plant | milestone | 0d | 2016-10-01 | 2016-10-01 |  | -943d | 140d | start on 2014-03-03 | 823B (7 days - 9 hours) | 823B_AB |
| 823B-A-ADC-0620 |  | Water Pump House | milestone | 0d | 2016-10-01 | 2016-10-01 |  | -943d | 140d | start on 2014-03-03 | 823B (7 days - 9 hours) | 823B_AB |
| 823B-A-ADC-0630 |  | Diesel Filling Station | milestone | 0d | 2016-10-01 | 2016-10-01 |  | -943d | 140d | start on 2014-03-03 | 823B (7 days - 9 hours) | 823B_AB |
| 823B-A-ADC-0640 |  | Security Operation Centre | milestone | 0d | 2016-10-01 | 2016-10-01 |  | -943d | 140d | start on 2014-03-03 | 823B (7 days - 9 hours) | 823B_AB |
|  | 14 | **853 - Main Control System** |  |  | 2013-06-10 | 2016-10-01 |  |  |  |  |  |  |
| 823B-A-ADC-0670 |  | Shek Kong Feeder Station | milestone | 0d | 2013-06-10 A | 2013-06-10 A | 100% |  |  | start on 2013-06-10 | 823B (7 days - 9 hours) | 823B_AB |
| 823B-A-ADC-0680 |  | Infrastructure, Building Maintenance & Pway Building | milestone | 0d | 2013-10-28 A | 2013-10-28 A | 100% |  |  | start on 2013-10-28 | 823B (7 days - 9 hours) | 823B_AB |
| 823B-A-ADC-0660 |  | Main Building | milestone | 0d | 2013-12-02 A | 2013-12-02 A | 100% |  |  | start on 2013-12-02 | 823B (7 days - 9 hours) | 823B_AB |
| 823B-A-ADC-0650 |  | ERS Plant Buildings - TER, SER, Corridors and roof | milestone | 0d | 2016-10-01 | 2016-10-01 |  | -929d | 140d | start on 2014-03-17 | 823B (7 days - 9 hours) | 823B_AB |
| 823B-A-ADC-0690 |  | Dangerous Goods Store | milestone | 0d | 2016-10-01 | 2016-10-01 |  | -943d | 140d | start on 2014-03-03 | 823B (7 days - 9 hours) | 823B_AB |
| 823B-A-ADC-0700 |  | Train Wash Building & Train Wash Plant | milestone | 0d | 2016-10-01 | 2016-10-01 |  | -943d | 140d | start on 2014-03-03 | 823B (7 days - 9 hours) | 823B_AB |
| 823B-A-ADC-0710 |  | Water Pump House | milestone | 0d | 2016-10-01 | 2016-10-01 |  | -943d | 140d | start on 2014-03-03 | 823B (7 days - 9 hours) | 823B_AB |
| 823B-A-ADC-0720 |  | Diesel Filling Station | milestone | 0d | 2016-10-01 | 2016-10-01 |  | -943d | 140d | start on 2014-03-03 | 823B (7 days - 9 hours) | 823B_AB |
| 823B-A-ADC-0730 |  | Security Operation Centre | milestone | 0d | 2016-10-01 | 2016-10-01 |  | -943d | 140d | start on 2014-03-03 | 823B (7 days - 9 hours) | 823B_AB |

| ID | WBS | Activity | Type | Duration | Start | Finish | Complete | Planned start | Planned finish | Total float | Free float | Constraint | Calendar | 823B_As-built |
| --- | --- | --- | --- | --- | --- | --- | --- | --- | --- | --- | --- | --- | --- | --- |
|  | 15 | **854 - Security Access Management System (SAMS)** |  |  | 2013-12-02 | 2016-10-01 |  |  |  |  |  |  |  |  |
| 823B-A-ADC-0750 |  | Shek Kong Feeder Station | milestone | 0d | 2013-12-02 A | 2013-12-02 A | 100% |  |  |  |  | start on 2013-12-02 | 823B (7 days - 9 hours) | 823B_AB |
| 823B-A-ADC-0740 |  | Main Building | milestone | 0d | 2016-10-01 | 2016-10-01 |  |  |  | -824d | 140d | start on 2014-06-30 | 823B (7 days - 9 hours) | 823B_AB |
| 823B-A-ADC-0760 |  | Infrastructure, Building Maintenance & Pway Building | milestone | 0d | 2016-10-01 | 2016-10-01 |  |  |  | -824d | 140d | start on 2014-06-30 | 823B (7 days - 9 hours) | 823B_AB |
| 823B-A-ADC-0770 |  | Dangerous Goods Store | milestone | 0d | 2016-10-01 | 2016-10-01 |  |  |  | -824d | 140d | start on 2014-06-30 | 823B (7 days - 9 hours) | 823B_AB |
| 823B-A-ADC-0780 |  | Train Wash Building & Train Wash Plant | milestone | 0d | 2016-10-01 | 2016-10-01 |  |  |  | -824d | 140d | start on 2014-06-30 | 823B (7 days - 9 hours) | 823B_AB |
| 823B-A-ADC-0790 |  | Water Pump House | milestone | 0d | 2016-10-01 | 2016-10-01 |  |  |  | -824d | 140d | start on 2014-06-30 | 823B (7 days - 9 hours) | 823B_AB |
| 823B-A-ADC-0800 |  | Diesel Filling Station | milestone | 0d | 2016-10-01 | 2016-10-01 |  |  |  | -824d | 140d | start on 2014-06-30 | 823B (7 days - 9 hours) | 823B_AB |
| 823B-A-ADC-0810 |  | Security Operation Centre | milestone | 0d | 2016-10-01 | 2016-10-01 |  |  |  | -824d | 140d | start on 2014-06-30 | 823B (7 days - 9 hours) | 823B_AB |
|  | 16 | **855 - Building Services for Tunnel Ventilation Buildings and Emergency Rescue Siding** |  |  | 2016-10-01 | 2016-10-01 |  |  |  |  |  |  |  |  |
| 823B-A-ADC-0820 |  | ERS Plant Buildings | milestone | 0d | 2016-10-01 | 2016-10-01 |  |  |  | -1048d | 140d | start on 2013-11-18 | 823B (7 days - 9 hours) | 823B_AB |
|  | 17 | **856 - Building Services for SSS** |  |  | 2012-12-03 | 2014-12-08 |  |  |  |  |  |  |  |  |
| 823B-A-ADC-0870 |  | Shek Kong Feeder Station | milestone | 0d | 2012-12-03 A | 2012-12-03 A | 100% |  |  |  |  | start on 2012-12-03 | 823B (7 days - 9 hours) | 823B_AB |
| 823B-A-ADC-0880 |  | Infrastructure, Building Maintenance & Pway Building | milestone | 0d | 2013-02-25 A | 2013-02-25 A | 100% |  |  |  |  | start on 2013-02-25 | 823B (7 days - 9 hours) | 823B_AB |
| 823B-A-ADC-0860 |  | Main Building | milestone | 0d | 2013-04-01 A | 2013-04-01 A | 100% |  |  |  |  | start on 2013-04-01 | 823B (7 days - 9 hours) | 823B_AB |
| 823B-A-ADC-0850 |  | Running Maintenance Shed, Rail Stillages, FBW & Steel Portal, S&C Assembly Storage and Loco Shed | milestone | 0d | 2013-05-27 A | 2013-05-27 A | 100% |  |  |  |  | start on 2013-05-27 | 823B (7 days - 9 hours) | 823B_AB |
| 823B-A-ADC-0910 |  | Water Pump House | milestone | 0d | 2013-05-27 A | 2013-05-27 A | 100% |  |  |  |  | start on 2013-05-27 | 823B (7 days - 9 hours) | 823B_AB |
| 823B-A-ADC-0930 |  | Security Operation Centre | milestone | 0d | 2013-05-27 A | 2013-05-27 A | 100% |  |  |  |  | start on 2013-05-27 | 823B (7 days - 9 hours) | 823B_AB |
| 823B-A-ADC-0830 |  | SSS - Area P2.1 as shown in the Annex 6.1 | milestone | 0d | 2013-07-29 A | 2013-07-29 A | 100% |  |  |  |  | start on 2013-07-29 | 823B (7 days - 9 hours) | 823B_AB |
| 823B-A-ADC-0840 |  | SSS - Area P3.1 as shown in the Annex 6.1 | milestone | 0d | 2013-08-20 A | 2013-08-20 A | 100% | 2013-08-12 | 2013-08-12 |  |  | start on 2013-08-12 | 823B (7 days - 9 hours) | 823B_AB |
| 823B-A-ADC-0890 |  | Dangerous Goods Store | milestone | 0d | 2013-08-26 A | 2013-08-26 A | 100% |  |  |  |  | start on 2013-08-26 | 823B (7 days - 9 hours) | 823B_AB |
| 823B-A-ADC-0940 |  | External Areas | milestone | 0d | 2013-12-30 A | 2013-12-30 A | 100% |  |  |  |  | start on 2013-12-30 | 823B (7 days - 9 hours) | 823B_AB |
| 823B-A-ADC-0845 |  | SSS - Area P3.2 as shown in the Annex 6.1 | milestone | 0d | 2013-12-31 A | 2013-12-31 A | 100% | 2013-11-18 | 2013-11-18 |  |  | start on 2013-11-18 | 823B (7 days - 9 hours) | 823B_AB |
| 823B-A-ADC-0835 |  | SSS - Area P2.2 as shown in the Annex 6.1 | milestone | 0d | 2014-09-15 A | 2014-09-15 A | 100% | 2015-08-01 | 2015-08-01 |  |  | start on 2013-09-02 | 823B (7 days - 9 hours) | 823B_AB |
| 823B-A-ADC-0900 |  | Train Wash Building & Train Wash Plant | milestone | 0d | 2014-10-31 A | 2014-10-31 A | 100% | 2014-11-01 | 2014-11-01 |  |  | start on 2013-08-26 | 823B (7 days - 9 hours) | 823B_AB |
| 823B-A-ADC-0920 |  | Diesel Filling Station | milestone | 0d | 2014-12-08 A | 2014-12-08 A | 100% | 2015-08-01 | 2015-08-01 |  |  | start on 2013-08-26 | 823B (7 days - 9 hours) | 823B_AB |

| ID | WBS | Activity | Type | Duration | Start | Finish | Predecessors | Complete | Total float | Free float | Constraint | Calendar | 823B_As-built |
| --- | --- | --- | --- | --- | --- | --- | --- | --- | --- | --- | --- | --- | --- |
|  | 18 | **860A - Depot Equipment for SSS (Train Wash Plant)** |  |  | 2016-10-01 | 2016-10-01 |  |  |  |  |  |  |  |
| 823B-A-ADC-0950 |  | Train Wash Building & Train Wash Plant | milestone | 0d | 2016-10-01 | 2016-10-01 |  |  | -943d | 140d | start on 2014-03-03 | 823B (7 days - 9 hours) | 823B_AB |
| 823B-A-ADC-0960 |  | Main Building - SSS Control Centre | milestone | 0d | 2016-10-01 | 2016-10-01 |  |  | -943d | 140d | start on 2014-03-03 | 823B (7 days - 9 hours) | 823B_AB |
|  | 19 | **860B - Depot Equipment for SSS (Overhead Cranes)** |  |  | 2016-10-01 | 2016-10-01 |  |  |  |  |  |  |  |
| 823B-A-ADC-0970 |  | Loco Shed and Infrastructure, and Building Maintenance & Pway Building | milestone | 0d | 2016-10-01 | 2016-10-01 |  |  | -971d | 140d | start on 2014-02-03 | 823B (7 days - 9 hours) | 823B_AB |
| 823B-A-ADC-0980 |  | Main Building - SSS Control Centre | milestone | 0d | 2016-10-01 | 2016-10-01 |  |  | -943d | 140d | start on 2014-03-03 | 823B (7 days - 9 hours) | 823B_AB |
| 823B-A-ADC-0990 |  | Rail Stillages, FBW Steel Portal, S&C Assembly Storage | milestone | 0d | 2016-10-01 | 2016-10-01 |  |  | -726d | 140d | start on 2014-10-06 | 823B (7 days - 9 hours) | 823B_AB |
|  | 20 | **860C - Depot Equipment for SSS (Train Sewage Suction System)** |  |  | 2013-05-27 | 2016-10-01 |  |  |  |  |  |  |  |
| 823B-A-ADC-1000 |  | Running Maintenance Shed | milestone | 0d | 2013-05-27 A | 2013-05-27 A |  | 100% |  |  | start on 2013-05-27 | 823B (7 days - 9 hours) | 823B_AB |
| 823B-A-ADC-1010 |  | Main Building - SSS Control Centre | milestone | 0d | 2016-10-01 | 2016-10-01 |  |  | -943d | 140d | start on 2014-03-03 | 823B (7 days - 9 hours) | 823B_AB |
|  | 21 | **860D - Depot Equipment for SSS (Wheel Monitoring System)** |  |  | 2016-10-01 | 2016-10-01 |  |  |  |  |  |  |  |
| 823B-A-ADC-1020 |  | Shunt Neck | milestone | 0d | 2016-10-01 | 2016-10-01 |  |  | -859d | 140d | start on 2014-05-26 | 823B (7 days - 9 hours) | 823B_AB |
| 823B-A-ADC-1030 |  | Main Building - SSS Control Centre | milestone | 0d | 2016-10-01 | 2016-10-01 |  |  | -943d | 140d | start on 2014-03-03 | 823B (7 days - 9 hours) | 823B_AB |
|  | 22 | **860E - Depot Equipment for SSS (Miscellaneous)** |  |  | 2013-10-28 | 2013-10-28 |  |  |  |  |  |  |  |
| 823B-A-ADC-1040 |  | Infrastructure, Building Maintenance & Pway Building | milestone | 0d | 2013-10-28 A | 2013-10-28 A |  | 100% |  |  | start on 2013-10-28 | 823B (7 days - 9 hours) | 823B_AB |
|  | 23 | **861 - Engineering Vehicles** |  |  | 2014-02-03 | 2014-02-03 |  |  |  |  |  |  |  |
| 823B-A-ADC-1050 |  | Running Maintenance Shed, Rail Stillages & FBW Steel Portal, S&C Assembly Storage and Loco Shed | milestone | 0d | 2014-02-03 A | 2014-02-03 A |  | 100% |  |  | start on 2014-02-03 | 823B (7 days - 9 hours) | 823B_AB |
|  | 9 | **DESIGN SUBMISSIONS** |  |  | 2010-10-20 | 2011-10-17 |  |  |  |  |  |  |  |
|  | 1 | **Temporary Works Design for Running Tunnel and Approach Tunnel** |  |  | 2010-10-20 | 2011-03-17 |  |  |  |  |  |  |  |
| 823B-DP001-010 |  | Design of Temporary Diaphragm Wall and ELS |  | 20d | 2010-10-20 A | 2010-11-11 A | 823B-CD-10 | 100% |  |  |  |  | 823B_AB |
| 823B-DP001-020 |  | MTR's review and approval period |  | 24d | 2010-11-12 A | 2010-12-09 A | 823B-DP001-010 | 100% |  |  |  |  | 823B_AB |
| 823B-DP001-030 |  | Respond to MTR's comment and Resubmit (1st) |  | 12d | 2010-12-10 A | 2010-12-23 A | 823B-DP001-020 | 100% |  |  |  |  | 823B_AB |
| 823B-DP001-040 |  | MTR's review and approval period (1st Resubmission) |  | 24d | 2010-12-24 A | 2011-01-24 A | 823B-DP001-030 | 100% |  |  |  |  | 823B_AB |
| 823B-DP001-050 |  | Respond to MTR's comment and Resubmit (2nd) |  | 12d | 2011-01-25 A | 2011-02-10 A | 823B-DP001-040 | 100% |  |  |  |  | 823B_AB |
| 823B-DP001-060 |  | MTR's review and approval period (2nd Resubmission) |  | 24d | 2011-02-11 A | 2011-03-10 A | 823B-DP001-050 | 100% |  |  |  |  | 823B_AB |
| 823B-DP001-070 |  | Issue of Completed Working Drawings |  | 6d | 2011-03-11 A | 2011-03-17 A | 823B-DP001-060 | 100% |  |  |  |  | 823B_AB |

| ID | WBS | Activity | Duration | Start | Finish | Predecessors | Complete | 823B_As-built |
| --- | --- | --- | --- | --- | --- | --- | --- | --- |
|  | 2 | **Temporary Works Design for the Construction of ERS** |  | 2010-10-20 | 2011-04-16 |  |  |  |
| 823B-DP002-010 |  | Design of ELS for the Construction of ERS | 45d | 2010-10-20 A | 2010-12-10 A | 823B-CD-10 | 100% | 823B_AB |
| 823B-DP002-020 |  | MTR's review and approval period | 24d | 2010-12-11 A | 2011-01-11 A | 823B-DP002-010 | 100% | 823B_AB |
| 823B-DP002-030 |  | Respond to MTR's comment and Resubmit (1st) | 12d | 2011-01-12 A | 2011-01-25 A | 823B-DP002-020 | 100% | 823B_AB |
| 823B-DP002-040 |  | MTR's review and approval period (1st Resubmission) | 24d | 2011-01-26 A | 2011-02-25 A | 823B-DP002-030 | 100% | 823B_AB |
| 823B-DP002-050 |  | Respond to MTR's comment and Resubmit (2nd) | 12d | 2011-02-26 A | 2011-03-11 A | 823B-DP002-040 | 100% | 823B_AB |
| 823B-DP002-060 |  | MTR's review and approval period (2nd Resubmission) | 24d | 2011-03-12 A | 2011-04-09 A | 823B-DP002-050 | 100% | 823B_AB |
| 823B-DP002-070 |  | Issue of Completed Working Drawings | 6d | 2011-04-11 A | 2011-04-16 A | 823B-DP002-060 | 100% | 823B_AB |
|  | 3 | **Temporary Works Design for East and West Drainage Box Culvert** |  | 2010-10-20 | 2011-03-05 |  |  |  |
|  | 1 | **East Drainage Box Culvert** |  | 2010-10-20 | 2011-03-05 |  |  |  |
| 823B-DP003-010 |  | Design of ELS and Dewatering for the construction of East Box Culvert | 24d | 2010-10-20 A | 2010-11-16 A | 823B-CD-10 | 100% | 823B_AB |
| 823B-DP003-020 |  | MTR's review and approval period | 24d | 2010-11-17 A | 2010-12-14 A | 823B-DP003-010 | 100% | 823B_AB |
| 823B-DP003-030 |  | Respond to MTR's comment and Resubmit (1st) | 12d | 2010-12-15 A | 2010-12-30 A | 823B-DP003-020 | 100% | 823B_AB |
| 823B-DP003-040 |  | MTR's review and approval period (1st Resubmission) | 24d | 2010-12-31 A | 2011-01-28 A | 823B-DP003-030 | 100% | 823B_AB |
| 823B-DP003-050 |  | Respond to MTR's comment and Resubmit (2nd) | 6d | 2011-01-29 A | 2011-02-08 A | 823B-DP003-040 | 100% | 823B_AB |
| 823B-DP003-060 |  | MTR's review and approval period (2nd Resubmission) | 18d | 2011-02-09 A | 2011-03-01 A | 823B-DP003-050 | 100% | 823B_AB |
| 823B-DP003-070 |  | Issue of Completed Working Drawings | 4d | 2011-03-02 A | 2011-03-05 A | 823B-DP003-060 | 100% | 823B_AB |
|  | 2 | **West Drainage Box Culvert** |  | 2010-10-20 | 2011-02-19 |  |  |  |
| 823B-DP003-080 |  | Design of ELS and Dewatering for the construction of West Box Culvert | 12d | 2010-10-20 A | 2010-11-02 A | 823B-CD-10 | 100% | 823B_AB |
| 823B-DP003-090 |  | MTR's review and approval period | 24d | 2010-11-03 A | 2010-11-30 A | 823B-DP003-080 | 100% | 823B_AB |
| 823B-DP003-100 |  | Respond to MTR's comment and Resubmit (1st) | 6d | 2010-12-01 A | 2010-12-07 A | 823B-DP003-090 | 100% | 823B_AB |
| 823B-DP003-110 |  | MTR's review and approval period (1st Resubmission) | 24d | 2010-12-08 A | 2011-01-07 A | 823B-DP003-100 | 100% | 823B_AB |
| 823B-DP003-120 |  | Respond to MTR's comment and Resubmit (2nd) | 6d | 2011-01-08 A | 2011-01-14 A | 823B-DP003-110 | 100% | 823B_AB |
| 823B-DP003-130 |  | MTR's review and approval period (2nd Resubmission) | 24d | 2011-01-15 A | 2011-02-15 A | 823B-DP003-120 | 100% | 823B_AB |
| 823B-DP003-140 |  | Issue of Completed Working Drawings | 4d | 2011-02-16 A | 2011-02-19 A | 823B-DP003-130 | 100% | 823B_AB |

| ID | WBS | Activity | Duration | Start | Finish | Predecessors | Complete | 823B_As-built |
| --- | --- | --- | --- | --- | --- | --- | --- | --- |
|  | 4 | **Temporary Diversion Schemes for the Whole Site** |  | 2010-10-20 | 2011-04-02 |  |  |  |
|  | 1 | **Drainage Impact Assessment (DIA)** |  | 2010-10-20 | 2011-03-19 |  |  |  |
| 823B-DP004-010 |  | Drainage Impact Assessment (DIA) Study Report | 30d | 2010-10-20 A | 2010-11-23 A | 823B-CD-10 | 100% | 823B_AB |
| 823B-DP004-020 |  | MTR's review and approval period | 24d | 2010-11-24 A | 2010-12-21 A | 823B-DP004-010 | 100% | 823B_AB |
| 823B-DP004-030 |  | Respond to MTR's comment and Resubmit (1st) | 12d | 2010-12-22 A | 2011-01-07 A | 823B-DP004-020 | 100% | 823B_AB |
| 823B-DP004-040 |  | MTR's review and approval period (1st Resubmission) | 24d | 2011-01-08 A | 2011-02-08 A | 823B-DP004-030 | 100% | 823B_AB |
| 823B-DP004-050 |  | Respond to MTR's comment and Resubmit (2nd) | 6d | 2011-02-09 A | 2011-02-15 A | 823B-DP004-040 | 100% | 823B_AB |
| 823B-DP004-060 |  | MTR's review and approval period (2nd Resubmission) | 24d | 2011-02-16 A | 2011-03-15 A | 823B-DP004-050 | 100% | 823B_AB |
| 823B-DP004-070 |  | Issue of Completed Working Drawings | 4d | 2011-03-16 A | 2011-03-19 A | 823B-DP004-060 | 100% | 823B_AB |
|  | 2 | **Flood Mitigation Plan** |  | 2010-10-20 | 2011-04-02 |  |  |  |
| 823B-DP004-080 |  | Flood Mitigation Plan of the Site | 30d | 2010-10-20 A | 2010-11-23 A | 823B-CD-10 | 100% | 823B_AB |
| 823B-DP004-090 |  | MTR's review and approval period | 24d | 2010-11-24 A | 2010-12-21 A | 823B-DP004-080 | 100% | 823B_AB |
| 823B-DP004-100 |  | Respond to MTR's comment and Resubmit (1st) | 18d | 2010-12-22 A | 2011-01-14 A | 823B-DP004-090 | 100% | 823B_AB |
| 823B-DP004-110 |  | MTR's review and approval period (1st Resubmission) | 24d | 2011-01-15 A | 2011-02-15 A | 823B-DP004-100 | 100% | 823B_AB |
| 823B-DP004-120 |  | Respond to MTR's comment and Resubmit (2nd) | 12d | 2011-02-16 A | 2011-03-01 A | 823B-DP004-110 | 100% | 823B_AB |
| 823B-DP004-130 |  | MTR's review and approval period (2nd Resubmission) | 24d | 2011-03-02 A | 2011-03-29 A | 823B-DP004-120 | 100% | 823B_AB |
| 823B-DP004-140 |  | Issue of Completed Working Drawings | 4d | 2011-03-30 A | 2011-04-02 A | 823B-DP004-130 | 100% | 823B_AB |
|  | 3 | **All Temporary Stream Diversion** |  | 2010-10-20 | 2011-03-19 |  |  |  |
| 823B-DP004-150 |  | All Temporary Stream Diversion | 30d | 2010-10-20 A | 2010-11-23 A | 823B-CD-10 | 100% | 823B_AB |
| 823B-DP004-160 |  | MTR's review and approval period | 24d | 2010-11-24 A | 2010-12-21 A | 823B-DP004-150 | 100% | 823B_AB |
| 823B-DP004-170 |  | Respond to MTR's comment and Resubmit (1st) | 12d | 2010-12-22 A | 2011-01-07 A | 823B-DP004-160 | 100% | 823B_AB |
| 823B-DP004-180 |  | MTR's review and approval period (1st Resubmission) | 24d | 2011-01-08 A | 2011-02-08 A | 823B-DP004-170 | 100% | 823B_AB |
| 823B-DP004-190 |  | Respond to MTR's comment and Resubmit (2nd) | 6d | 2011-02-09 A | 2011-02-15 A | 823B-DP004-180 | 100% | 823B_AB |
| 823B-DP004-200 |  | MTR's review and approval period (2nd Resubmission) | 24d | 2011-02-16 A | 2011-03-15 A | 823B-DP004-190 | 100% | 823B_AB |
| 823B-DP004-210 |  | Issue of Completed Working Drawings | 4d | 2011-03-16 A | 2011-03-19 A | 823B-DP004-200 | 100% | 823B_AB |

| ID | WBS | Activity | Duration | Start | Finish | Predecessors | Complete | 823B_As-built |
| --- | --- | --- | --- | --- | --- | --- | --- | --- |
|  | 5 | **Temporary Support for WSD DN1400 Watermain Diversion** |  | 2010-10-20 | 2011-05-14 |  |  |  |
|  | 1 | **Temporary Support for WSD DN1400 Watermain spanned over Cofferdam** |  | 2010-10-20 | 2011-05-14 |  |  |  |
| 823B-DP005-010 |  | Design of Temporary support for WSD DN1400 Watermain spanned over cofferdam | 60d | 2010-10-20 A | 2010-12-30 A | 823B-CD-10 | 100% | 823B_AB |
| 823B-DP005-020 |  | MTR's review and approval period | 24d | 2010-12-31 A | 2011-01-28 A | 823B-DP005-010 | 100% | 823B_AB |
| 823B-DP005-030 |  | Respond to MTR's comment and Resubmit (1st) | 18d | 2011-01-29 A | 2011-02-22 A | 823B-DP005-020 | 100% | 823B_AB |
| 823B-DP005-040 |  | MTR's review and approval period (1st Resubmission) | 24d | 2011-02-23 A | 2011-03-22 A | 823B-DP005-030 | 100% | 823B_AB |
| 823B-DP005-050 |  | Respond to MTR's comment and Resubmit (2nd) | 12d | 2011-03-23 A | 2011-04-06 A | 823B-DP005-040 | 100% | 823B_AB |
| 823B-DP005-060 |  | MTR's review and approval period (2nd Resubmission) | 24d | 2011-04-07 A | 2011-05-09 A | 823B-DP005-050 | 100% | 823B_AB |
| 823B-DP005-070 |  | Issue of Completed Working Drawings | 4d | 2011-05-11 A | 2011-05-14 A | 823B-DP005-060 | 100% | 823B_AB |
|  | 2 | **Connections and associated Thrust Blocks** |  | 2010-10-20 | 2011-05-14 |  |  |  |
| 823B-DP005-080 |  | Design of Connections and the associated thrust blocks | 60d | 2010-10-20 A | 2010-12-30 A | 823B-CD-10 | 100% | 823B_AB |
| 823B-DP005-090 |  | MTR's review and approval period | 24d | 2010-12-31 A | 2011-01-28 A | 823B-DP005-080 | 100% | 823B_AB |
| 823B-DP005-100 |  | Respond to MTR's comment and Resubmit (1st) | 18d | 2011-01-29 A | 2011-02-22 A | 823B-DP005-090 | 100% | 823B_AB |
| 823B-DP005-110 |  | MTR's review and approval period (1st Resubmission) | 24d | 2011-02-23 A | 2011-03-22 A | 823B-DP005-100 | 100% | 823B_AB |
| 823B-DP005-120 |  | Respond to MTR's comment and Resubmit (2nd) | 12d | 2011-03-23 A | 2011-04-06 A | 823B-DP005-110 | 100% | 823B_AB |
| 823B-DP005-130 |  | MTR's review and approval period (2nd Resubmission) | 24d | 2011-04-07 A | 2011-05-09 A | 823B-DP005-120 | 100% | 823B_AB |
| 823B-DP005-140 |  | Issue of Completed Working Drawings | 4d | 2011-05-11 A | 2011-05-14 A | 823B-DP005-130 | 100% | 823B_AB |
|  | 6 | **Temporary Support for Drainage Diversion spanned over Cofferdam** |  | 2010-10-20 | 2011-05-21 |  |  |  |
| 823B-DP006-010 |  | Design of Temporary support for Temporary Stream Diversion of Leung Uk Tsuen Stream spanned over cofferdam | 60d | 2010-10-20 A | 2010-12-30 A | 823B-CD-10 | 100% | 823B_AB |
| 823B-DP006-020 |  | MTR's review and approval period | 24d | 2010-12-31 A | 2011-01-28 A | 823B-DP006-010 | 100% | 823B_AB |
| 823B-DP006-030 |  | Respond to MTR's comment and Resubmit (1st) | 18d | 2011-01-29 A | 2011-02-22 A | 823B-DP006-020 | 100% | 823B_AB |
| 823B-DP006-040 |  | MTR's review and approval period (1st Resubmission) | 24d | 2011-02-23 A | 2011-03-22 A | 823B-DP006-030 | 100% | 823B_AB |
| 823B-DP006-050 |  | Respond to MTR's comment and Resubmit (2nd) | 18d | 2011-03-23 A | 2011-04-13 A | 823B-DP006-040 | 100% | 823B_AB |
| 823B-DP006-060 |  | MTR's review and approval period (2nd Resubmission) | 24d | 2011-04-14 A | 2011-05-17 A | 823B-DP006-050 | 100% | 823B_AB |
| 823B-DP006-070 |  | Issue of Completed Working Drawings | 4d | 2011-05-18 A | 2011-05-21 A | 823B-DP006-060 | 100% | 823B_AB |

| ID | WBS | Activity | Duration | Start | Finish | Predecessors | Complete | 823B_As-built |
| --- | --- | --- | --- | --- | --- | --- | --- | --- |
|  | 7 | **Temporary Deck for Temporary Traffic Diversion for Kam Tin Road** |  | 2010-10-20 | 2011-05-24 |  |  |  |
|  | 1 | **for Kam Tin Road Diversion spanned over Cofferdam** |  | 2010-11-24 | 2011-05-24 |  |  |  |
| 823B-DP007-010 |  | Design of Temporary Traffic Deck for Kam Tin Road Diversion spanned over cofferdam | 30d | 2010-11-24 A | 2010-12-30 A | 823B-DP007-080 | 100% | 823B_AB |
| 823B-DP007-020 |  | MTR's review and approval period | 24d | 2010-12-31 A | 2011-01-28 A | 823B-DP007-010 | 100% | 823B_AB |
| 823B-DP007-030 |  | Respond to MTR's comment and Resubmit (1st) | 18d | 2011-01-29 A | 2011-02-22 A | 823B-DP007-020 | 100% | 823B_AB |
| 823B-DP007-040 |  | MTR's review and approval period (1st Resubmission) | 24d | 2011-02-23 A | 2011-03-22 A | 823B-DP007-030 | 100% | 823B_AB |
| 823B-DP007-050 |  | Respond to MTR's comment and Resubmit (2nd) | 18d | 2011-03-23 A | 2011-04-13 A | 823B-DP007-040 | 100% | 823B_AB |
| 823B-DP007-060 |  | MTR's review and approval period (2nd Resubmission) | 24d | 2011-04-14 A | 2011-05-17 A | 823B-DP007-050 | 100% | 823B_AB |
| 823B-DP007-070 |  | Issue of Completed Working Drawings | 6d | 2011-05-18 A | 2011-05-24 A | 823B-DP007-060 | 100% | 823B_AB |
|  | 2 | **for Kam Tin Road Diversion spanned over Shek Kong Stream** |  | 2010-10-20 | 2011-04-13 |  |  |  |
| 823B-DP007-080 |  | Design of Temporary Traffic Decking for Kam Tin Road Diversion spanned over Shek Kong Stream | 30d | 2010-10-20 A | 2010-11-23 A | 823B-CD-10 | 100% | 823B_AB |
| 823B-DP007-090 |  | MTR's review and approval period | 24d | 2010-11-24 A | 2010-12-21 A | 823B-DP007-080 | 100% | 823B_AB |
| 823B-DP007-100 |  | Respond to MTR's comment and Resubmit (1st) | 18d | 2010-12-22 A | 2011-01-14 A | 823B-DP007-090 | 100% | 823B_AB |
| 823B-DP007-110 |  | MTR's review and approval period (1st Resubmission) | 24d | 2011-01-15 A | 2011-02-15 A | 823B-DP007-100 | 100% | 823B_AB |
| 823B-DP007-120 |  | Respond to MTR's comment and Resubmit (2nd) | 18d | 2011-02-16 A | 2011-03-08 A | 823B-DP007-110 | 100% | 823B_AB |
| 823B-DP007-130 |  | MTR's review and approval period (2nd Resubmission) | 24d | 2011-03-09 A | 2011-04-06 A | 823B-DP007-120 | 100% | 823B_AB |
| 823B-DP007-140 |  | Issue of Completed Working Drawings | 6d | 2011-04-07 A | 2011-04-13 A | 823B-DP007-130 | 100% | 823B_AB |
|  | 3 | **Temporary Road (other than traffic decking)** |  | 2010-10-20 | 2011-04-13 |  |  |  |
| 823B-DP007-150 |  | Design of Temporary Road (other than traffic decking) | 30d | 2010-10-20 A | 2010-11-23 A | 823B-CD-10 | 100% | 823B_AB |
| 823B-DP007-160 |  | MTR's review and approval period | 24d | 2010-11-24 A | 2010-12-21 A | 823B-DP007-150 | 100% | 823B_AB |
| 823B-DP007-170 |  | Respond to MTR's comment and Resubmit (1st) | 18d | 2010-12-22 A | 2011-01-14 A | 823B-DP007-160 | 100% | 823B_AB |
| 823B-DP007-180 |  | MTR's review and approval period (1st Resubmission) | 24d | 2011-01-15 A | 2011-02-15 A | 823B-DP007-170 | 100% | 823B_AB |
| 823B-DP007-190 |  | Respond to MTR's comment and Resubmit (2nd) | 18d | 2011-02-16 A | 2011-03-08 A | 823B-DP007-180 | 100% | 823B_AB |
| 823B-DP007-200 |  | MTR's review and approval period (2nd Resubmission) | 24d | 2011-03-09 A | 2011-04-06 A | 823B-DP007-190 | 100% | 823B_AB |
| 823B-DP007-210 |  | Issue of Completed Working Drawings | 6d | 2011-04-07 A | 2011-04-13 A | 823B-DP007-200 | 100% | 823B_AB |

| ID | WBS | Activity | Duration | Start | Finish | Predecessors | Complete | 823B_As-built |
| --- | --- | --- | --- | --- | --- | --- | --- | --- |
|  | 8 | **Temporary Diversion Scheme - Kam Tin Road** |  | 2010-10-20 | 2011-04-13 |  |  |  |
|  | 1 | **TTM for Kam Tin Road Diversion** |  | 2010-10-20 | 2011-04-01 |  |  |  |
| 823B-DP008-010 |  | TTM for Kam Tin Road Diversion | 30d | 2010-10-20 A | 2010-11-23 A | 823B-CD-10 | 100% | 823B_AB |
| 823B-DP008-020 |  | MTR's review and approval period | 24d | 2010-11-24 A | 2010-12-21 A | 823B-DP008-010 | 100% | 823B_AB |
| 823B-DP008-030 |  | Respond to MTR's comment and Resubmit (1st) | 18d | 2010-12-22 A | 2011-01-14 A | 823B-DP008-020 | 100% | 823B_AB |
| 823B-DP008-040 |  | MTR's review and approval period (1st Resubmission) | 24d | 2011-01-15 A | 2011-02-15 A | 823B-DP008-030 | 100% | 823B_AB |
| 823B-DP008-050 |  | Respond to MTR's comment and Resubmit (2nd) | 12d | 2011-02-16 A | 2011-03-01 A | 823B-DP008-040 | 100% | 823B_AB |
| 823B-DP008-060 |  | MTR's review and approval period (2nd Resubmission) | 24d | 2011-03-02 A | 2011-03-29 A | 823B-DP008-050 | 100% | 823B_AB |
| 823B-DP008-070 |  | Issue of Completed Working Drawings | 3d | 2011-03-30 A | 2011-04-01 A | 823B-DP008-060 | 100% | 823B_AB |
|  | 2 | **Road Geotmetry Levels, Pavement Compostion, Road Drainage & Associated Footpath** |  | 2010-10-20 | 2011-04-13 |  |  |  |
| 823B-DP008-080 |  | Design of Road geotmetry levels, Pavement compostion and Road drainage and associated Footpath | 30d | 2010-10-20 A | 2010-11-23 A | 823B-CD-10 | 100% | 823B_AB |
| 823B-DP008-090 |  | MTR's review and approval period | 24d | 2010-11-24 A | 2010-12-21 A | 823B-DP008-080 | 100% | 823B_AB |
| 823B-DP008-100 |  | Respond to MTR's comment and Resubmit (1st) | 18d | 2010-12-22 A | 2011-01-14 A | 823B-DP008-090 | 100% | 823B_AB |
| 823B-DP008-110 |  | MTR's review and approval period (1st Resubmission) | 24d | 2011-01-15 A | 2011-02-15 A | 823B-DP008-100 | 100% | 823B_AB |
| 823B-DP008-120 |  | Respond to MTR's comment and Resubmit (2nd) | 18d | 2011-02-16 A | 2011-03-08 A | 823B-DP008-110 | 100% | 823B_AB |
| 823B-DP008-130 |  | MTR's review and approval period (2nd Resubmission) | 24d | 2011-03-09 A | 2011-04-06 A | 823B-DP008-120 | 100% | 823B_AB |
| 823B-DP008-140 |  | Issue of Completed Working Drawings | 6d | 2011-04-07 A | 2011-04-13 A | 823B-DP008-130 | 100% | 823B_AB |
|  | 9 | **Acoustic Absorption Panesls within ERS and to part of the SSS perimeter** |  | 2011-05-05 | 2011-10-17 |  |  |  |
| 823B-DP009-010 |  | Design of Acoustic Absorption Panels within ERS and to part of the SSS perimeter | 30d | 2011-05-05 A | 2011-06-10 A | 823B-DP002-070 FS+11d | 100% | 823B_AB |
| 823B-DP009-020 |  | MTR's review and approval period | 24d | 2011-06-11 A | 2011-07-09 A | 823B-DP009-010 | 100% | 823B_AB |
| 823B-DP009-030 |  | Respond to MTR's comment and Resubmit (1st) | 14d | 2011-07-11 A | 2011-07-26 A | 823B-DP009-020 | 100% | 823B_AB |
| 823B-DP009-040 |  | MTR's review and approval period (1st Resubmission) | 24d | 2011-07-27 A | 2011-08-23 A | 823B-DP009-030 | 100% | 823B_AB |
| 823B-DP009-050 |  | Respond to MTR's comment and Resubmit (2nd) | 14d | 2011-08-24 A | 2011-09-08 A | 823B-DP009-040 | 100% | 823B_AB |
| 823B-DP009-060 |  | MTR's review and approval period (2nd Resubmission) | 24d | 2011-09-09 A | 2011-10-10 A | 823B-DP009-050 | 100% | 823B_AB |
| 823B-DP009-070 |  | Issue of Completed Working Drawings | 6d | 2011-10-11 A | 2011-10-17 A | 823B-DP009-060 | 100% | 823B_AB |

| ID | WBS | Activity | Duration | Start | Finish | Predecessors | Complete | 823B_As-built |
| --- | --- | --- | --- | --- | --- | --- | --- | --- |
|  | 13 | **Protection Measures for Utility Services** |  | 2010-12-04 | 2011-05-05 |  |  |  |
| 823B-DP013-010 |  | Design of Protection Measures for Utility Services | 30d | 2010-12-04 A | 2011-01-11 A | 823B-DP005-010 FS-21d | 100% | 823B_AB |
| 823B-DP013-020 |  | MTR's review and approval period | 24d | 2011-01-12 A | 2011-02-11 A | 823B-DP013-010 | 100% | 823B_AB |
| 823B-DP013-030 |  | Respond to MTR's comment and Resubmit (1st) | 6d | 2011-02-12 A | 2011-02-18 A | 823B-DP013-020 | 100% | 823B_AB |
| 823B-DP013-040 |  | MTR's review and approval period (1st Resubmission) | 24d | 2011-02-19 A | 2011-03-18 A | 823B-DP013-030 | 100% | 823B_AB |
| 823B-DP013-050 |  | Respond to MTR's comment and Resubmit (2nd) | 6d | 2011-03-19 A | 2011-03-25 A | 823B-DP013-040 | 100% | 823B_AB |
| 823B-DP013-060 |  | MTR's review and approval period (2nd Resubmission) | 24d | 2011-03-26 A | 2011-04-27 A | 823B-DP013-050 | 100% | 823B_AB |
| 823B-DP013-070 |  | Issue of Completed Working Drawings | 6d | 2011-04-28 A | 2011-05-05 A | 823B-DP013-060 | 100% | 823B_AB |
|  | 14 | **Temporary Decking** |  | 2011-05-13 | 2011-08-20 |  |  |  |
|  | 1 | **over Nullah at the end of Shek Kong Airfield Road** |  | 2011-05-13 | 2011-08-06 |  |  |  |
| 823B-DP015-010 |  | Design of Temporary Decking over Nullah at the end of Shek Kong Airfield Road | 12d | 2011-05-13 A | 2011-05-26 A |  | 100% | 823B_AB |
| 823B-DP015-020 |  | MTR's review and approval period | 24d | 2011-05-27 A | 2011-06-24 A | 823B-DP015-010 | 100% | 823B_AB |
| 823B-DP015-030 |  | Respond to MTR's comment and Resubmit | 6d | 2011-06-25 A | 2011-07-02 A | 823B-DP015-020 | 100% | 823B_AB |
| 823B-DP015-040 |  | MTR's review and approval period | 24d | 2011-07-04 A | 2011-07-30 A | 823B-DP015-030 | 100% | 823B_AB |
| 823B-DP015-050 |  | Issue of Completed Working Drawings | 6d | 2011-08-01 A | 2011-08-06 A | 823B-DP015-040 | 100% | 823B_AB |
|  | 2 | **over Internal Temporary Drainage** |  | 2011-05-27 | 2011-08-20 |  |  |  |
| 823B-DP015-060 |  | Design of Temporary Decking over Internal Temporary Drainage | 12d | 2011-05-27 A | 2011-06-10 A | 823B-DP015-010 | 100% | 823B_AB |
| 823B-DP015-070 |  | MTR's review and approval period | 24d | 2011-06-11 A | 2011-07-09 A | 823B-DP015-060 | 100% | 823B_AB |
| 823B-DP015-080 |  | Respond to MTR's comment and Resubmit | 6d | 2011-07-11 A | 2011-07-16 A | 823B-DP015-070 | 100% | 823B_AB |
| 823B-DP015-090 |  | MTR's review and approval period | 24d | 2011-07-18 A | 2011-08-13 A | 823B-DP015-080 | 100% | 823B_AB |
| 823B-DP015-100 |  | Issue of Completed Working Drawings | 6d | 2011-08-15 A | 2011-08-20 A | 823B-DP015-090 | 100% | 823B_AB |
|  | 10 | **PROCUREMENT FOR MAJOR ABWF WORKS** |  | 2012-06-15 | 2013-09-26 |  |  |  |
| 823B-PRO-1040 |  | for Shek Kong Feeder Station (SHK) | 90d | 2012-06-15 A | 2012-09-29 A | 823B-H-SHK-Z2-1330 SS | 100% | 823B_AB |
| 823B-PRO-1020 |  | for Main Building (SMB) | 90d | 2012-12-01 A | 2013-03-22 A | 823B-F-SMB-S-1310 | 100% | 823B_AB |
| 823B-PRO-1050 |  | for Other Minor Buildings | 90d | 2012-12-08 A | 2013-04-02 A | 823B-H-RSP-1060 SS, 823B-H-SLS-S-1100 SS, 823B-H-DGS-S-1090 SS, 823B-H-SOC-S-1020 SS, 823B-H-WPH-S-1040 SS | 100% | 823B_AB |
| 823B-PRO-1010 |  | for Running Maintenance Shed (RMS) | 90d | 2012-12-13 A | 2013-04-08 A | 823B-E-RMS3-1440 | 100% | 823B_AB |
| 823B-PRO-1030 |  | for Infrastructure, Building Maintenance and PWay Building (IBP) | 90d | 2013-02-18 A | 2013-06-08 A | 823B-G-IBP-S-1210, 823B-G-IBP-S-1220, 823B-G-IBP-S-1230 | 100% | 823B_AB |
| 823B-PRO-1000 |  | for Emergency Rescue Siding (ERS) | 90d | 2013-06-11 A | 2013-09-26 A | 823B-ERS-A2-RT-1180 SS, 823B-ERS-A6-RT-1130 SS, 823B-ERS-A6-RT-1200 SS, 823B-ERS-A6-RT-1260 SS | 100% | 823B_AB |

| ID | WBS | Activity | Duration | Start | Finish | Predecessors | Complete | Resources | 823B_As-built |
| --- | --- | --- | --- | --- | --- | --- | --- | --- | --- |
|  | A | **PRELIMINARIES AND GENERAL REQUIREMENTS** |  | 2010-10-25 | 2017-02-11 |  |  |  |  |
|  | 1 | **Site Accomodation & Services to the Engineer** |  | 2010-11-01 | 2015-04-30 |  |  |  |  |
| 823B-A-PSA-0010 |  | Provide Engineer with detailed drawings of Site Accomodation | 6d | 2010-11-01 A | 2010-11-06 A |  | 100% |  | 823B_AB |
| 823B-A-PSA-0020 |  | Engineer's Approval | 24d | 2010-11-08 A | 2010-12-04 A | 823B-A-PSA-0010 | 100% |  | 823B_AB |
| 823B-A-PSA-0022 |  | Address Engineer's Comment and Resubmission | 6d | 2010-12-06 A | 2010-12-11 A | 823B-A-PSA-0020 | 100% |  | 823B_AB |
| 823B-A-PSA-0024 |  | Resubmission Approval Period | 24d | 2010-12-13 A | 2011-01-12 A | 823B-A-PSA-0022 | 100% |  | 823B_AB |
| 823B-A-PSA-0030 |  | Obtain Statutory Approval | 36d | 2011-01-13 A | 2011-02-26 A | 823B-A-PSA-0020, 823B-A-PSA-0022, 823B-A-PSA-0024 | 100% |  | 823B_AB |
| 823B-A-PSA-0060 |  | Provide, install, service & maintain 4 container offices for use by the Engineer's Site Staff near Kam Tin Road [PS20.5] | 12d | 2011-05-13 A | 2011-05-26 A | 823B-AC-0070, 823B-AC-0095 | 100% |  | 823B_AB |
| 823B-A-PSA-0070 |  | Supply Engineer with Survey Equipment [PS41.1.1] | 24d | 2011-05-27 A | 2011-06-24 A | 823B-A-PSA-0060 | 100% |  | 823B_AB |
| 823B-A-PSA-0080 |  | Provide Engineer with suitably qualified full time Survey Assistant - 4 nos. [PS41.3.1] | 24d | 2011-05-27 A | 2011-06-24 A | 823B-A-PSA-0070 SS | 100% |  | 823B_AB |
| 823B-A-PSA-0090 |  | Provide Engineer with site transportation as detailed in PS42.1 | 6d | 2011-05-27 A | 2011-06-02 A | 823B-A-PSA-0080 SS | 100% |  | 823B_AB |
| 823B-A-PSA-0100 |  | Submit details of qualified drivers to be assigned to the Engineer, for review [PS42.2.1] | 14d | 2011-05-27 A | 2011-06-13 A | 823B-A-PSA-0090 SS | 100% |  | 823B_AB |
| 823B-A-PSA-0040 |  | Erect Site Accomodation | 46d | 2011-07-02 A | 2011-08-24 A | 823B-A-PSA-0030, 823B-A-PWS-0840, 823B-A-TWS-0060 FF, 823B-A-TWS-0070 FF | 100% | Operator [4 NO]; Operator [1472 h]; Other - Plant & Equipment [4 NO]; Labour [44 NO]; Labour [16192 h]; Other - Plant & Equipment [1472 h] | 823B_AB |
| 823B-A-PSA-0050 |  | Provide services and equipment, maintain and remove upon expiry of DLP for the Engineer and his Staff | 1130d | 2011-07-08 A | 2015-04-30 A | 823B-A-PSA-0040 SS, 823B-A-PSA-0060, 823B-A-PSA-0100 SS | 100% | Labour [385792 h]; Labour [32 NO] | 823B_AB |
|  | 2 | **Preliminary Works** |  | 2010-10-25 | 2012-08-08 |  |  |  |  |
| 823B-A-PWS-0090 |  | Proposed Outline TTM Scheme - Prepare & submit to the: Engineer for Review / SLG for Approval [PS19.3] | 60d | 2010-10-25 A | 2011-01-05 A | 823B-CD-20 | 100% |  | 823B_AB |
| 823B-A-PWS-0230 |  | Submission of Contingency Plan for Groundwater Drawdown (PS22.2.4) | 45d | 2010-10-25 A | 2010-12-15 A | 823B-CD-20 | 100% |  | 823B_AB |
| 823B-A-PWS-0280 |  | Taking over of existing instrumentation (P30.4.2) | 12d | 2010-10-25 A | 2010-11-06 A | 823B-CD-20 | 100% |  | 823B_AB |
| 823B-A-PWS-0140 |  | Noise Management Plan [P22.3.9] | 45d | 2010-11-20 A | 2011-01-14 A | 823B-A-SPM-0010 SS | 100% |  | 823B_AB |
| 823B-A-PWS-0150 |  | Air Quality Management Plan [P22.4.3] | 45d | 2010-11-20 A | 2011-01-14 A | 823B-A-SPM-0010 SS | 100% |  | 823B_AB |
| 823B-A-PWS-0160 |  | Detailed Proposal for Water Pollution Control Measures and Proposed Monitoring [PS22.5.1] | 45d | 2010-11-23 A | 2011-01-17 A | 823B-CD-20 | 100% |  | 823B_AB |
| 823B-A-PWS-0100 |  | Reviewal Period / Approval Process by Engineer/SLG of the Proposed TTM Scheme [PS19.4] | 84d | 2010-11-29 A | 2011-03-12 A | 823B-A-PWS-0090 FS-30d | 100% |  | 823B_AB |
| 823B-A-PWS-0240 |  | Approval period for Contingency Plan for Groundwater Drawdown | 30d | 2010-12-16 A | 2011-01-22 A | 823B-A-PWS-0230 | 100% |  | 823B_AB |
| 823B-A-PWS-0170 |  | Vibration Monitoring Plan [PS22.8.1 & P22.8.3] | 30d | 2010-12-23 A | 2011-01-29 A | 823B-CD-20 | 100% |  | 823B_AB |
| 823B-A-PWS-0110 |  | Resubmission of Proposed Outline TTM Scheme (if required) | 30d | 2011-03-14 A | 2011-04-18 A | 823B-A-PWS-0100 | 100% |  | 823B_AB |
| 823B-A-PWS-0120 |  | Reviewal Period / Approval Process by Engineer/SLG of the Resubmitted Proposed Outline TTM Scheme [PS19.4] | 42d | 2011-04-19 A | 2011-06-13 A | 823B-A-PWS-0110 | 100% |  | 823B_AB |
| 823B-A-PWS-0010 |  | Initial Site Survey including CCTV survey to existing drains | 12d | 2011-06-07 A | 2011-06-20 A | 823B-A-PWS-0280, 823B-AC-0010, 823B-AC-0015, 823B-AC-0020, 823B-AC-0025, 823B-AC-0030, 823B-AC-0035, 823B-AC-0040, 823B-AC-0045, 823B-AC-0050, 823B-AC-0055, 823B-AC-0060, 823B-AC-0065, 823B-AC-0070, 823B-AC-0075, 823B-AC-0080, 823B-AC-0085, 823B-AC-0090, 823B-AC-0095, 823B-AC-0100, 823B-AC-0105, 823B-AC-0110, 823B-AC-0115, 823B-AC-0120, 823B-AC-0125, 823B-AC-0130, 823B-AC-0135, 823B-AC-0140, 823B-AC-0145, 823B-AC-0150, 823B-AC-0155, 823B-AC-0160 | 100% | Labour [30 NO]; Operator [20 NO]; Other - Plant & Equipment [20 NO]; Labour [2880 h]; Operator [1920 h]; Other - Plant & Equipment [1920 h] | 823B_AB |
| 823B-A-PWS-0030 |  | Temporary Occupation Area: Conduct, prepare and submit TOA Record Survey for various Works Areas [PS4.2] | 12d | 2011-06-07 A | 2011-06-20 A | 823B-A-PWS-0010 SS | 100% | Labour [30 NO]; Labour [2880 h] | 823B_AB |
| 823B-A-PWS-0220 |  | Confirmation of Tree Survey (PS4.5.2) | 14d | 2011-06-07 A | 2011-06-22 A | 823B-AC-0010, 823B-AC-0015, 823B-AC-0020, 823B-AC-0025, 823B-AC-0030, 823B-AC-0035, 823B-AC-0040, 823B-AC-0045, 823B-AC-0050, 823B-AC-0055, 823B-AC-0060, 823B-AC-0065, 823B-AC-0070, 823B-AC-0075, 823B-AC-0080, 823B-AC-0085, 823B-AC-0090, 823B-AC-0095, 823B-AC-0100, 823B-AC-0105, 823B-AC-0110, 823B-AC-0115, 823B-AC-0120, 823B-AC-0125, 823B-AC-0130, 823B-AC-0135, 823B-AC-0140, 823B-AC-0145, 823B-AC-0150, 823B-AC-0155, 823B-AC-0160 | 100% |  | 823B_AB |
| 823B-A-PWS-0130 |  | Notification Period of the Approved TTM Scheme prior to implementation [PS19.4] | 28d | 2011-06-14 A | 2011-07-16 A | 823B-A-PWS-0120 | 100% |  | 823B_AB |
| 823B-A-PWS-0020 |  | Initial Site Survey Report [PS4.1.5] | 6d | 2011-06-16 A | 2011-06-22 A | 823B-A-PWS-0010 FS-4d | 100% |  | 823B_AB |
| 823B-A-PWS-0040 |  | Proposal for Site Clearance Works [PS4.4.1] | 6d | 2011-06-16 A | 2011-06-22 A | 823B-A-PWS-0020 FF, 823B-A-PWS-0030 FF | 100% |  | 823B_AB |
| 823B-A-PWS-0250 |  | 823A to extend CLP Cable to South of SSS for their TBM Operation (to be agreed with Contract 823A) | 48d | 2011-06-30 A | 2011-08-25 A |  | 100% |  | 823B_AB |
| 823B-A-PWS-0260 |  | 822 to extend CLP Cable to South of SSS for their Drill & Blast Operation (to be agreed with Contract 822) | 48d | 2011-06-30 A | 2011-08-25 A |  | 100% |  | 823B_AB |
| 823B-A-PWS-0270 |  | Steel Frame for CCTV by Others (to be agreed with party concern) | 19d | 2011-06-30 A | 2011-07-22 A |  | 100% |  | 823B_AB |
| 823B-A-PWS-0050 |  | Initial Site Survey (incl. CCTV survey to existing drains) for WA 4.4, 4.5 & 4.7 | 12d | 2012-07-23 A | 2012-08-04 A | 823B-KTR-1020 | 100% | Operator [768 h]; Labour [1152 h]; Other - Plant & Equipment [8 NO]; Operator [8 NO]; Labour [12 NO]; Other - Plant & Equipment [768 h] | 823B_AB |
| 823B-A-PWS-0060 |  | Initial Site Survey Report for WA 4.4, 4.5 & 4.7 | 6d | 2012-08-02 A | 2012-08-08 A | 823B-A-PWS-0050 FS-3d | 100% |  | 823B_AB |
| 823B-A-PWS-0070 |  | Temporary Occupation Area: Conduct, prepare and submit TOA Record Survey for for WA 4.4, 4.5 & 4.7 | 6d | 2012-08-02 A | 2012-08-08 A | 823B-A-PWS-0060 SS | 100% | Labour [6 NO]; Labour [288 h] | 823B_AB |
| 823B-A-PWS-0080 |  | Proposal for Site Clearance Works for WA 4.4, 4.5 & 4.7 | 6d | 2012-08-02 A | 2012-08-08 A | 823B-A-PWS-0060 SS, 823B-A-PWS-0070 FF | 100% |  | 823B_AB |

| ID | WBS | Activity | Duration | Start | Finish | Predecessors | Complete | 823B_As-built |
| --- | --- | --- | --- | --- | --- | --- | --- | --- |
|  | 1 | **Condition Survey of EBS** |  | 2010-10-25 | 2011-06-22 |  |  |  |
| 823B-A-PWS-0400 |  | Appoint an independent chartered structural engineer or chartered surveyor to carry out condition survey | 28d | 2010-10-25 A | 2010-11-25 A | 823B-CD-20 | 100% | 823B_AB |
| 823B-A-PWS-0410 |  | Approval of the appointed independent chartered structural engineer or chartered surveyor by Engineer | 30d | 2010-11-26 A | 2011-01-03 A | 823B-A-PWS-0400 | 100% | 823B_AB |
| 823B-A-PWS-0420 |  | Conduct condition survey | 12d | 2011-06-07 A | 2011-06-20 A | 823B-A-PWS-0410, 823B-AC-0010, 823B-AC-0015, 823B-AC-0020, 823B-AC-0025, 823B-AC-0030, 823B-AC-0035, 823B-AC-0040, 823B-AC-0045, 823B-AC-0050, 823B-AC-0055, 823B-AC-0060, 823B-AC-0065, 823B-AC-0070, 823B-AC-0075, 823B-AC-0080, 823B-AC-0085, 823B-AC-0090, 823B-AC-0095, 823B-AC-0100, 823B-AC-0105, 823B-AC-0110, 823B-AC-0115, 823B-AC-0120, 823B-AC-0125, 823B-AC-0130, 823B-AC-0135, 823B-AC-0140, 823B-AC-0145, 823B-AC-0150, 823B-AC-0155, 823B-AC-0160 | 100% | 823B_AB |
| 823B-A-PWS-0430 |  | Prepare and submit condition survey report | 12d | 2011-06-09 A | 2011-06-22 A | 823B-A-PWS-0420 SS+2d | 100% | 823B_AB |
|  | 2 | **Tree Felling & Pruning** |  | 2011-06-23 | 2011-10-21 |  |  |  |
|  | 1 | **CH123+520 to CH123+920** |  | 2011-06-23 | 2011-08-23 |  |  |  |
| 823B-A-PWS-0500 |  | ERS Area | 20d | 2011-06-23 A | 2011-07-16 A | 823B-AC-0045, 823B-AC-0050, 823B-AC-0030, 823B-AC-0035, 823B-AC-0095, 823B-AC-0100, 823B-AC-0105 | 100% | 823B_AB |
| 823B-A-PWS-0510 |  | SSS Area + remaining | 32d | 2011-07-18 A | 2011-08-23 A | 823B-A-PWS-0500 | 100% | 823B_AB |
|  | 2 | **CH123+920 to CH124+190** |  | 2011-06-23 | 2011-10-07 |  |  |  |
| 823B-A-PWS-0520 |  | ERS Area | 16d | 2011-06-23 A | 2011-07-12 A | 823B-AC-0040, 823B-AC-0055, 823B-AC-0080, 823B-AC-0095, 823B-AC-0110, 823B-AC-0115, 823B-AC-0060 | 100% | 823B_AB |
| 823B-A-PWS-0530 |  | SSS Area + remaining | 36d | 2011-08-24 A | 2011-10-07 A | 823B-A-PWS-0520, 823B-A-PWS-0510 | 100% | 823B_AB |
|  | 3 | **CH124+190 to CH124+760** |  | 2011-06-23 | 2011-10-21 |  |  |  |
| 823B-A-PWS-0540 |  | ERS / Running and Approach Tunnel Area | 16d | 2011-06-23 A | 2011-07-12 A | 823B-AC-0060, 823B-AC-0085, 823B-AC-0090, 823B-AC-0010, 823B-AC-0025, 823B-AC-0020, 823B-AC-0015, 823B-AC-0155, 823B-AC-0160, 823B-AC-0130, 823B-AC-0135, 823B-AC-0150, 823B-AC-0140, 823B-AC-0145, 823B-AC-0120, 823B-AC-0125 | 100% | 823B_AB |
| 823B-A-PWS-0550 |  | Remaining Area | 12d | 2011-10-08 A | 2011-10-21 A | 823B-A-PWS-0540, 823B-A-PWS-0530 | 100% | 823B_AB |
|  | 3 | **Land Contamination Works** |  | 2010-10-25 | 2011-07-30 |  |  |  |
|  | 1 | **CH123+520 to CH123+920** |  | 2010-10-25 | 2011-07-30 |  |  |  |
| 823B-A-PWS-0600 |  | Contamination Assessment Plan (CAP) - Prepare & submit to EPD for Approval [PS22.9.2] - Area F | 6d | 2010-10-25 A | 2010-10-30 A | 823B-AC-0010, 823B-AC-0045, 823B-AC-0050, 823B-AC-0065, 823B-AC-0070, 823B-AC-0075, 823B-AC-0095, 823B-AC-0100, 823B-AC-0105 | 100% | 823B_AB |
| 823B-A-PWS-0610 |  | Contamination Assessment Plan (CAP) - Approval Period - Area F | 24d | 2010-11-01 A | 2010-11-27 A | 823B-A-PWS-0600 | 100% | 823B_AB |
| 823B-A-PWS-0620 |  | Conduct Contamination Assessment in accordance with the Approved CAP [PS22.9.2] - Area F | 12d | 2010-11-29 A | 2010-12-11 A | 823B-A-PWS-0610 | 100% | 823B_AB |
| 823B-A-PWS-0630 |  | Contamination Assessment Report & Remediation Action Plan - Prepare and submit to EPD for Approval - Area F | 12d | 2010-12-10 A | 2010-12-23 A | 823B-A-PWS-0620 FS-2d | 100% | 823B_AB |
| 823B-A-PWS-0640 |  | Contamination Assessment Report & Remediation Action Plan - Approval Period - Area F | 24d | 2010-12-24 A | 2011-01-24 A | 823B-A-PWS-0630 | 100% | 823B_AB |
| 823B-A-PWS-0650 |  | Conduct remediation in accordance with method proposed in the approved Remediation Action Plan [PS22.9.3] - Area F | 100d | 2011-02-22 A | 2011-06-25 A | 823B-A-PWS-0630, 823B-A-PWS-0640 | 100% | 823B_AB |
| 823B-A-PWS-0660 |  | Remediation Report - Prepare and submit for Approval [PS22.9.3] - Area F | 24d | 2011-06-01 A | 2011-06-29 A | 823B-A-PWS-0650 FF+3d | 100% | 823B_AB |
| 823B-A-PWS-0670 |  | Remediation Report - Approval Period - Area F | 36d | 2011-06-18 A | 2011-07-30 A | 823B-A-PWS-0660 FS-10d | 100% | 823B_AB |

| ID | WBS | Activity | Duration | Start | Finish | Predecessors | Complete | 823B_As-built |
| --- | --- | --- | --- | --- | --- | --- | --- | --- |
|  | 2 | **CH123+920 to CH124+190** |  | 2010-10-25 | 2011-07-30 |  |  |  |
| 823B-A-PWS-0700 |  | Contamination Assessment Plan (CAP) - Prepare & submit to EPD for Approval [PS22.9.2] - Area B & G | 12d | 2010-10-25 A | 2010-11-06 A | 823B-AC-0055, 823B-AC-0060, 823B-AC-0080, 823B-AC-0110, 823B-AC-0115 | 100% | 823B_AB |
| 823B-A-PWS-0710 |  | Contamination Assessment Plan (CAP) - Approval Period - Area B & G | 24d | 2010-11-08 A | 2010-12-04 A | 823B-A-PWS-0700 | 100% | 823B_AB |
| 823B-A-PWS-0720 |  | Conduct Contamination Assessment in accordance with the Approved CAP [PS22.9.2] - Area B & G | 28d | 2010-12-06 A | 2011-01-10 A | 823B-A-PWS-0710 | 100% | 823B_AB |
| 823B-A-PWS-0730 |  | Contamination Assessment Report & Remediation Action Plan - Prepare and submit to EPD for Approval - Area B & G | 12d | 2010-12-29 A | 2011-01-12 A | 823B-A-PWS-0720 FS-10d | 100% | 823B_AB |
| 823B-A-PWS-0740 |  | Contamination Assessment Report & Remediation Action Plan - Approval Period - Area B & G | 24d | 2011-01-13 A | 2011-02-12 A | 823B-A-PWS-0730 | 100% | 823B_AB |
| 823B-A-PWS-0750 |  | Conduct remediation in accordance with method proposed in the approved Remediation Action Plan [PS22.9.3] - Area B & G | 100d | 2011-02-22 A | 2011-06-25 A | 823B-A-PWS-0730, 823B-A-PWS-0740 | 100% | 823B_AB |
| 823B-A-PWS-0760 |  | Remediation Report - Prepare and submit for Approval [PS22.9.3] - Area B & G | 24d | 2011-05-31 A | 2011-06-28 A | 823B-A-PWS-0750 FF+2d | 100% | 823B_AB |
| 823B-A-PWS-0770 |  | Remediation Report - Approval Period - Area B & G | 27d | 2011-06-29 A | 2011-07-30 A | 823B-A-PWS-0760 | 100% | 823B_AB |
|  | 3 | **CH124+190 to CH124+760** |  | 2010-10-25 | 2011-07-12 |  |  |  |
| 823B-A-PWS-0800 |  | Contamination Assessment Plan (CAP) - Prepare & submit to EPD for Approval [PS22.9.2] - Areas U, V & W | 12d | 2010-10-25 A | 2010-11-06 A | 823B-AC-0010, 823B-AC-0015, 823B-AC-0020, 823B-AC-0025, 823B-AC-0060, 823B-AC-0085, 823B-AC-0090, 823B-AC-0120, 823B-AC-0125, 823B-AC-0130, 823B-AC-0135, 823B-AC-0140, 823B-AC-0145, 823B-AC-0150, 823B-AC-0155, 823B-AC-0160 | 100% | 823B_AB |
| 823B-A-PWS-0810 |  | Contamination Assessment Plan (CAP) - Approval Period - Areas U, V & W | 24d | 2010-11-08 A | 2010-12-04 A | 823B-A-PWS-0800 | 100% | 823B_AB |
| 823B-A-PWS-0820 |  | Conduct Contamination Assessment in accordance with the Approved CAP [PS22.9.2] - Areas U, V & W | 18d | 2010-12-06 A | 2010-12-28 A | 823B-A-PWS-0810 | 100% | 823B_AB |
| 823B-A-PWS-0830 |  | Contamination Assessment Report & Remediation Action Plan - Prepare and submit to EPD for Approval - Areas U, V & W | 12d | 2010-12-14 A | 2010-12-29 A | 823B-A-PWS-0820 FS-11d | 100% | 823B_AB |
| 823B-A-PWS-0840 |  | Contamination Assessment Report & Remediation Action Plan - Approval Period - Areas U, V & W | 24d | 2010-12-30 A | 2011-01-27 A | 823B-A-PWS-0830 | 100% | 823B_AB |
| 823B-A-PWS-0850 |  | Conduct remediation in accordance with method proposed in the approved Remediation Action Plan [PS22.9.3] - Area U V & W | 100d | 2011-02-22 A | 2011-06-25 A | 823B-A-PWS-0830, 823B-A-PWS-0840 | 100% | 823B_AB |
| 823B-A-PWS-0860 |  | Remediation Report - Prepare and submit for Approval [PS22.9.3] - Areas U, V & W | 24d | 2011-06-07 A | 2011-07-05 A | 823B-A-PWS-0850 FF+6d | 100% | 823B_AB |
| 823B-A-PWS-0870 |  | Remediation Report -Approval Period - Areas U, V & W | 6d | 2011-07-06 A | 2011-07-12 A | 823B-A-PWS-0860 | 100% | 823B_AB |
|  | 4 | **Asbestos Abatement Works** |  | 2011-06-07 | 2011-09-07 |  |  |  |
| 823B-A-PWS-0900 |  | Condition Survey EBS for presence of Asbestos and gather samples | 2d | 2011-06-07 A | 2011-06-08 A | 823B-AC-0010, 823B-AC-0015, 823B-AC-0020, 823B-AC-0025, 823B-AC-0030, 823B-AC-0035, 823B-AC-0040, 823B-AC-0045, 823B-AC-0050, 823B-AC-0055, 823B-AC-0060, 823B-AC-0065, 823B-AC-0070, 823B-AC-0075, 823B-AC-0080, 823B-AC-0085, 823B-AC-0090, 823B-AC-0095, 823B-AC-0100, 823B-AC-0105, 823B-AC-0110, 823B-AC-0115, 823B-AC-0120, 823B-AC-0125, 823B-AC-0130, 823B-AC-0135, 823B-AC-0140, 823B-AC-0145, 823B-AC-0150, 823B-AC-0155, 823B-AC-0160 | 100% | 823B_AB |
| 823B-A-PWS-0910 |  | Test gathered samples | 6d | 2011-06-09 A | 2011-06-15 A | 823B-A-PWS-0900 SS+2d, 823B-A-PWS-0430 SS | 100% | 823B_AB |
| 823B-A-PWS-0920 |  | Prepare and submit Asbestos Investigation Report (AIR) & Asbestos Abatement Plan (AAP) | 6d | 2011-06-10 A | 2011-06-16 A | 823B-A-PWS-0910 FF+1d | 100% | 823B_AB |
| 823B-A-PWS-0930 |  | Approval period of AIR & AAP | 28d | 2011-06-17 A | 2011-07-20 A | 823B-A-PWS-0920 | 100% | 823B_AB |
| 823B-A-PWS-0940 |  | Notification period to Engineer and EPD prior to Asbestos abatement works | 28d | 2011-07-21 A | 2011-08-22 A | 823B-A-PWS-0930, 823B-A-PWS-0430 | 100% | 823B_AB |
| 823B-A-PWS-0950 |  | Asbestos abatement works | 14d | 2011-08-23 A | 2011-09-07 A | 823B-A-PWS-0930, 823B-A-PWS-0940 | 100% | 823B_AB |

| ID | WBS | Activity | Duration | Start | Finish | Predecessors | Complete | Planned start | Planned finish | Resources | 823B_As-built |
| --- | --- | --- | --- | --- | --- | --- | --- | --- | --- | --- | --- |
|  | 3 | **Temporary Works** |  | 2010-10-25 | 2015-05-09 |  |  |  |  |  |  |
| 823B-A-TWS-0020 |  | Graphics to hoarding enclosing Lot No. 1795 in DD111 and in the vicinity of LET 6 [PS4.6.2] | 24d | 2011-05-25 A | 2011-06-22 A | 823B-AC-0110 | 100% |  |  | Labour [10 NO]; Labour [1920 h] | 823B_AB |
| 823B-A-TWS-0050 |  | Construct temporary site acces road | 90d | 2011-05-25 A | 2011-09-08 A | 823B-AC-0010, 823B-AC-0015, 823B-AC-0020, 823B-AC-0025, 823B-AC-0030, 823B-AC-0035, 823B-AC-0040, 823B-AC-0045, 823B-AC-0050, 823B-AC-0055, 823B-AC-0060, 823B-AC-0065, 823B-AC-0070, 823B-AC-0075, 823B-AC-0080, 823B-AC-0085, 823B-AC-0090, 823B-AC-0095, 823B-AC-0100, 823B-AC-0105, 823B-AC-0110, 823B-AC-0115, 823B-AC-0120, 823B-AC-0125, 823B-AC-0130, 823B-AC-0135, 823B-AC-0140, 823B-AC-0145, 823B-AC-0150, 823B-AC-0155, 823B-AC-0160 | 100% |  |  | Labour [8640 h]; Labour [12 NO]; Operator [4 NO]; Operator [2880 h]; Other - Plant & Equipment [4 NO]; Other - Plant & Equipment [2880 h] | 823B_AB |
| 823B-A-TWS-0060 |  | Temporary Power Supply installation | 30d | 2011-05-25 A | 2011-06-29 A | 823B-A-TWS-0050 SS | 100% |  |  |  | 823B_AB |
| 823B-A-TWS-0070 |  | Temporary Water Supply installation | 30d | 2011-05-25 A | 2011-06-29 A | 823B-A-TWS-0060 SS | 100% |  |  |  | 823B_AB |
| 823B-A-TWS-0080 |  | Temporary drainage & wheel washing | 30d | 2011-06-01 A | 2011-07-07 A | 823B-A-TWS-0050 SS+6d | 100% |  |  | Operator [1 NO]; Other - Plant & Equipment [1 NO]; Operator [240 h]; Labour [14 NO]; Labour [3360 h]; Other - Plant & Equipment [240 h] | 823B_AB |
| 823B-A-TWS-0010 |  | Erection of hoardings, walkways, fencing and gates [PS4.6.1] | 30d | 2011-06-07 A | 2011-07-12 A | 823B-AC-0010, 823B-AC-0015, 823B-AC-0020, 823B-AC-0025, 823B-AC-0030, 823B-AC-0035, 823B-AC-0040, 823B-AC-0045, 823B-AC-0050, 823B-AC-0055, 823B-AC-0060, 823B-AC-0065, 823B-AC-0070, 823B-AC-0075, 823B-AC-0080, 823B-AC-0085, 823B-AC-0090, 823B-AC-0095, 823B-AC-0100, 823B-AC-0105, 823B-AC-0110, 823B-AC-0115, 823B-AC-0120, 823B-AC-0125, 823B-AC-0130, 823B-AC-0135, 823B-AC-0140, 823B-AC-0145, 823B-AC-0150, 823B-AC-0155, 823B-AC-0160 | 100% |  |  | Other - Plant & Equipment [18 NO]; Operator [18 NO]; Labour [105 NO]; Labour [25200 h]; Operator [4320 h]; Other - Plant & Equipment [4320 h] | 823B_AB |
| 823B-A-TWS-0030 |  | Project Signboard Erection [PS4.6.8] | 12d | 2011-06-28 A | 2011-07-12 A | 823B-A-TWS-0020 FF, 823B-A-TWS-0010 FF | 100% |  |  | Labour [480 h]; Labour [5 NO]; Operator [1 NO]; Operator [64 h]; Other - Plant & Equipment [1 NO]; Other - Plant & Equipment [96 h] | 823B_AB |
| 823B-A-TWS-0100 |  | Temporary Platform construction for operation of D Wall Plants | 6d | 2011-06-28 A | 2011-07-05 A | 823B-SFE-1010 | 100% |  |  |  | 823B_AB |
| 823B-A-TWS-0110 |  | Setting-up Silo Plant and Equipment | 30d | 2011-07-06 A | 2011-08-09 A | 823B-A-TWS-0100 | 100% |  |  |  | 823B_AB |
| 823B-A-TWS-0090 |  | Temporary Bridge at Shek Kong Airfield Road | 24d | 2011-08-19 A | 2011-09-16 A | 823B-A-TWS-0030 | 100% |  |  |  | 823B_AB |
| 823B-A-TWS-0040 |  | Take over and maintain the hoarding erected by C823A upon possesion of WA 4.10, 4.10A, 4.11, 4.12B and 4.15 [PS4.6.12] | 254d | 2014-06-30 A | 2015-05-09 A | 823B-AC-0165, 823B-AC-0170, 823B-AC-0175, 823B-AC-0180, 823B-AC-0185, 823B-AC-0190, 823B-AC-0195 | 100% | 2015-05-02 | 2016-03-02 | Labour [6 NO]; Labour [12000 h] | 823B_AB |
|  | 1 | **Rambler Channel Barging Facility** |  | 2010-10-25 | 2013-07-25 |  |  |  |  |  |  |
| 823B-A-TWS-0200 |  | Design Barging Facilities | 26d | 2010-10-25 A | 2010-11-23 A | 823B-CD-20 | 100% |  |  |  | 823B_AB |
| 823B-A-TWS-0280 |  | Operation Plan for the Barging Facility - Prepare and Submit for Approval [PS17.1.9] | 30d | 2010-10-25 A | 2010-11-27 A | 823B-CD-20 | 100% |  |  |  | 823B_AB |
| 823B-A-TWS-0210 |  | Approval of Barging Facilities Design | 49d | 2010-11-24 A | 2011-01-22 A | 823B-A-TWS-0200 | 100% |  |  |  | 823B_AB |
| 823B-A-TWS-0290 |  | Operation Plan for the Barging Facility - Review and Approval Period | 21d | 2010-11-29 A | 2010-12-22 A | 823B-A-TWS-0280 | 100% |  |  |  | 823B_AB |
| 823B-A-TWS-0220 |  | Initial Site Survey (PS4.1.2) | 12d | 2010-12-01 A | 2010-12-14 A | 823B-AC-0225 | 100% |  |  |  | 823B_AB |
| 823B-A-TWS-0240 |  | Erection of Hoarding | 12d | 2010-12-06 A | 2010-12-18 A | 823B-AC-0225 | 100% |  |  | Labour [18 NO]; Labour [1728 h] | 823B_AB |
| 823B-A-TWS-0250 |  | Marine Survey at Barging Point [PS4.3.1] (before construction of barging facilities) | 24d | 2010-12-08 A | 2011-01-07 A | 823B-AC-0225 | 100% |  |  |  | 823B_AB |
| 823B-A-TWS-0230 |  | Initial Site Survey Report (PS4.1.2) | 12d | 2010-12-15 A | 2010-12-30 A | 823B-A-TWS-0220 | 100% |  |  |  | 823B_AB |
| 823B-A-TWS-0260 |  | Obtain Statutory Approval | 36d | 2011-01-24 A | 2011-03-09 A | 823B-A-TWS-0210 | 100% |  |  |  | 823B_AB |
| 823B-A-TWS-0270 |  | Construct barging facilities | 48d | 2011-01-24 A | 2011-03-23 A | 823B-A-TWS-0250, 823B-A-TWS-0210, 823B-A-TWS-0230, 823B-A-TWS-0240 | 100% |  |  | Operator [1152 h]; Operator [3 NO]; Labour [34 NO]; Labour [13056 h]; Other - Plant & Equipment [3 NO]; Other - Plant & Equipment [1152 h] | 823B_AB |
| 823B-A-TWS-0300 |  | Operate and maintain barging facilities | 1160d | 2011-03-24 A | 2013-07-25 A | 823B-A-TWS-0270, 823B-A-TWS-0290, 823B-A-TWS-0260 | 100% | 2011-03-24 | 2015-02-23 | Labour [8 NO]; Labour [74240 h] | 823B_AB |
| 823B-A-TWS-0310 |  | Marine Survey at Barging Point [PS4.3.1] (before handing back the Works Area) | 24d | 2013-07-25 A | 2013-07-25 A | 823B-A-TWS-0300 | 100% | 2015-02-25 | 2015-03-24 |  | 823B_AB |
| 823B-A-TWS-0320 |  | Remove facilities & hoardings and install chainlink fence & reinstate Works Area prior to handover | 35d | 2013-07-25 A | 2013-07-25 A | 823B-A-TWS-0310 | 100% | 2015-03-25 | 2015-05-09 | Other - Plant & Equipment [3 NO]; Operator [3 NO]; Operator [864 h]; Labour [6336 h]; Labour [22 NO]; Other - Plant & Equipment [864 h] | 823B_AB |

| ID | WBS | Activity | Duration | Start | Finish | Predecessors | Complete | Planned start | Planned finish | 823B_As-built |
| --- | --- | --- | --- | --- | --- | --- | --- | --- | --- | --- |
|  | 2 | **Concrete Batching Plant** |  | 2011-05-19 | 2014-06-24 |  |  |  |  |  |
|  | 1 | **APCO Requirement** |  | 2011-05-19 | 2011-09-24 |  |  |  |  |  |
| 823B-A-TWS-0400 |  | Preparation of SP submission | 24d | 2011-05-19 A | 2011-06-16 A | 823B-AC-0120 | 100% |  |  | 823B_AB |
| 823B-A-TWS-0410 |  | SP submission & EPD approval | 72d | 2011-06-17 A | 2011-09-09 A | 823B-A-TWS-0400 | 100% |  |  | 823B_AB |
| 823B-A-TWS-0420 |  | Gazettel to public | 24d | 2011-08-27 A | 2011-09-24 A | 823B-A-TWS-0410 FS-12d | 100% |  |  | 823B_AB |
|  | 2 | **EIAO Requirement** |  | 2011-05-19 | 2011-10-11 |  |  |  |  |  |
| 823B-A-TWS-0500 |  | Prepare and submit environmental review report | 48d | 2011-05-19 A | 2011-07-15 A | 823B-A-TWS-0400 SS | 100% |  |  | 823B_AB |
| 823B-A-TWS-0510 |  | Review and comment by MTR | 12d | 2011-07-16 A | 2011-07-29 A | 823B-A-TWS-0500 | 100% |  |  | 823B_AB |
| 823B-A-TWS-0520 |  | Resubmission | 12d | 2011-07-30 A | 2011-08-12 A | 823B-A-TWS-0510 | 100% |  |  | 823B_AB |
| 823B-A-TWS-0530 |  | EPD Review | 24d | 2011-08-13 A | 2011-09-09 A | 823B-A-TWS-0520 | 100% |  |  | 823B_AB |
| 823B-A-TWS-0540 |  | Issue VP from EPD | 24d | 2011-09-10 A | 2011-10-11 A | 823B-A-TWS-0530 | 100% |  |  | 823B_AB |
|  | 3 | **Design** |  | 2011-05-19 | 2011-09-24 |  |  |  |  |  |
| 823B-A-TWS-0610 |  | Prepare and Submit - Layout and Design | 30d | 2011-05-19 A | 2011-06-23 A | 823B-A-TWS-0400 SS | 100% |  |  | 823B_AB |
| 823B-A-TWS-0620 |  | Review and Approval Period - Layout and Design | 36d | 2011-06-24 A | 2011-08-05 A | 823B-A-TWS-0610 | 100% |  |  | 823B_AB |
| 823B-A-TWS-0630 |  | Address Comments and Resubmit - Layout and Design | 18d | 2011-08-06 A | 2011-08-26 A | 823B-A-TWS-0620 | 100% |  |  | 823B_AB |
| 823B-A-TWS-0640 |  | Review and Approval Period - Layout and Design Resubmission | 24d | 2011-08-27 A | 2011-09-24 A | 823B-A-TWS-0630 | 100% |  |  | 823B_AB |
|  | 4 | **Construction** |  | 2011-08-20 | 2014-06-24 |  |  |  |  |  |
| 823B-A-TWS-0700 |  | Site clearance / formation (Works Area 4.22A ) | 24d | 2011-08-20 A | 2011-09-17 A | 823B-SFE-1010 | 100% |  |  | 823B_AB |
| 823B-A-TWS-0710 |  | River bank protection & foundation | 36d | 2011-09-19 A | 2011-11-01 A | 823B-A-TWS-0700, 823B-A-TWS-0090 | 100% |  |  | 823B_AB |
| 823B-A-TWS-0720 |  | Erection and completion of batching plant | 30d | 2011-11-02 A | 2011-12-06 A | 823B-A-TWS-0710, 823B-A-TWS-0540, 823B-A-TWS-0420, 823B-A-TWS-0640 | 100% |  |  | 823B_AB |
| 823B-A-TWS-0730 |  | Final inspection by EPD | 6d | 2011-11-30 A | 2011-12-06 A | 823B-A-TWS-0720 FF | 100% |  |  | 823B_AB |
| 823B-A-TWS-0740 |  | Trial mix | 6d | 2011-12-07 A | 2011-12-13 A | 823B-A-TWS-0730 | 100% |  |  | 823B_AB |
| 823B-A-TWS-0750 |  | Commisioning / Operation | 596d | 2011-12-14 A | 2014-06-14 A | 823B-A-TWS-0740, 823B-A-TWS-0090 | 100% | 2011-12-14 | 2013-12-17 | 823B_AB |
| 823B-A-TWS-0760 |  | Decommissioning / dismantle | 8d | 2014-06-16 A | 2014-06-24 A | 823B-A-TWS-0750 | 100% |  |  | 823B_AB |

| ID | WBS | Activity | Duration | Start | Finish | Predecessors | Complete |
| --- | --- | --- | --- | --- | --- | --- | --- |
|  | 4 | **General Submission** |  | 2010-10-25 | 2011-01-29 |  |  |
| 823B-A-GNS-0010 |  | Methods of Construction - Prepare and submit for approval [GS12.1.1] | 28d | 2010-10-25 A | 2010-11-25 A | 823B-CD-20 | 100% |
| 823B-A-GNS-0030 |  | Contractor's Submission Schedule - Prepare and submit for approval [GS12.11.1] | 28d | 2010-10-25 A | 2010-11-25 A | 823B-CD-20 | 100% |
| 823B-A-GNS-0050 |  | Preliminary Design Programme - Prepare and Submit for Approval [PS7.1.8 - App. Z2.1] | 14d | 2010-10-25 A | 2010-11-09 A | 823B-CD-20 | 100% |
| 823B-A-GNS-0080 |  | Schedule of Designs - Prepare and Submit for Approval [PS7.1.8 - App. Z2.5] | 14d | 2010-11-10 A | 2010-11-25 A | 823B-A-GNS-0050 | 100% |
| 823B-A-GNS-0020 |  | Methods of Construction - Approval period | 28d | 2010-11-26 A | 2010-12-30 A | 823B-A-GNS-0010 | 100% |
| 823B-A-GNS-0040 |  | Contractor's Submission Schedule - Approval period | 28d | 2010-11-26 A | 2010-12-30 A | 823B-A-GNS-0030 | 100% |
| 823B-A-GNS-0060 |  | Preliminary Design Programme - Review and Approval Period [PS7.1.8 - App. Z2.2] | 28d | 2010-11-26 A | 2010-12-30 A | 823B-A-GNS-0050, 823B-A-GNS-0080 | 100% |
| 823B-A-GNS-0090 |  | Spoil Disposal Plan [PS17.7.1] | 30d | 2010-12-23 A | 2011-01-29 A | 823B-A-GNS-0100 SS | 100% |
| 823B-A-GNS-0100 |  | Waste Management Plan [PS22.10.1] | 30d | 2010-12-23 A | 2011-01-29 A | 823B-A-SPM-0010 | 100% |
| 823B-A-GNS-0070 |  | Preliminary Design Programme - Resubmission and Approval (if required) [PS7.1.8 - App. Z2.2] | 24d | 2010-12-31 A | 2011-01-28 A | 823B-A-GNS-0060 | 100% |
|  | 5 | **General and Special Attendance for Designated Contractors** |  | 2012-12-03 | 2015-04-30 |  |  |
| 823B-A-ADC-0000 |  | General and Special Attendance for Designated Contractors | 710d | 2012-12-03 A | 2015-04-30 A | 823B-A-ADC-0870 | 100% |
|  | 6 | **Programme Management System** |  | 2010-10-25 | 2013-08-24 |  |  |
| 823B-A-PMS-0010 |  | Preliminary Master Programme - Prepare and submit for approval [GS4.6.1] | 50d | 2010-10-25 A | 2010-12-21 A | 823B-CD-20 | 100% |
| 823B-A-PMS-0030 |  | Time Chainage Programme - Prepare and submit for approval [GS4.11.1] | 50d | 2010-10-25 A | 2010-12-21 A | 823B-A-PMS-0010 SS | 100% |
| 823B-A-PMS-0020 |  | Preliminary Master Programme - Approval period | 28d | 2010-12-22 A | 2011-01-26 A | 823B-A-PMS-0010 | 100% |
| 823B-A-PMS-0040 |  | Time Chainage Programme - Approval period | 28d | 2010-12-22 A | 2011-01-26 A | 823B-A-PMS-0030 | 100% |
| 823B-A-PMS-0050 |  | Implement Programme Management System | 170d | 2011-01-27 A | 2011-08-25 A | 823B-A-PMS-0040, 823B-A-PMS-0020 | 100% |
| 823B-A-PMS-0060 |  | Implement Programme Management System | 295d | 2011-08-26 A | 2012-08-23 A | 823B-A-PMS-0050 | 100% |
| 823B-A-PMS-0070 |  | Implement Programme Management System | 297d | 2012-08-24 A | 2013-08-24 A | 823B-A-PMS-0060 | 100% |
|  | 7 | **Detailed Interface Specification** |  | 2011-09-10 | 2012-12-28 |  |  |
| 823B-A-DIS-0010 |  | Prepare and Submit Detailed Interface Specification | 60d | 2011-09-10 A | 2011-11-22 A |  | 100% |
| 823B-A-DIS-0020 |  | Approval of Detailed Interface Plan | 30d | 2011-11-23 A | 2011-12-29 A | 823B-A-DIS-0010 | 100% |
| 823B-A-DIS-0030 |  | Prepare and Submit Detailed Interface Specification | 60d | 2012-09-10 A | 2012-11-21 A | 823B-A-DIS-0020 FS+207d | 100% |
| 823B-A-DIS-0040 |  | Approval of Detailed Interface Plan | 30d | 2012-11-22 A | 2012-12-28 A | 823B-A-DIS-0030 | 100% |

| ID | WBS | Activity | Duration | Start | Finish | Predecessors | Complete | Remaining | Planned start | Planned finish | Total float | Free float | Resources | user_start_date1 | 823B_As-built |
| --- | --- | --- | --- | --- | --- | --- | --- | --- | --- | --- | --- | --- | --- | --- | --- |
|  | 8 | **Specified Plan Management** |  | 2010-11-20 | 2014-03-29 |  |  |  |  |  |  |  |  |  |  |
| 823B-A-SPM-0010 |  | Environmental Management Plan - Prepare and submit for approval [GS5.1.10] | 28d | 2010-11-20 A | 2010-12-22 A | 823B-CD-20 | 100% |  |  |  |  |  |  |  |  |
| 823B-A-SPM-0030 |  | Quality Plan - Prepare and submit for approval [GS9.2.1] | 28d | 2010-11-22 A | 2010-12-23 A | 823B-CD-20 | 100% |  |  |  |  |  |  |  |  |
| 823B-A-SPM-0020 |  | Environmental Management Plan - Approval period | 28d | 2010-12-23 A | 2011-01-27 A | 823B-A-SPM-0010 | 100% |  |  |  |  |  |  |  |  |
| 823B-A-SPM-0040 |  | Quality Plan - Approval period | 28d | 2010-12-24 A | 2011-01-28 A | 823B-A-SPM-0030 | 100% |  |  |  |  |  |  |  |  |
| 823B-A-SPM-0050 |  | Implement Specified Plans and satisfactorily confirmed by Engineer | 20d | 2011-01-29 A | 2011-02-24 A | 823B-A-SPM-0040, 823B-A-SPM-0020 | 100% |  |  |  |  |  |  |  |  |
| 823B-A-SPM-0060 |  | Implement Specified Plans and satisfactorily confirmed by Engineer | 150d | 2011-02-25 A | 2011-08-27 A | 823B-A-SPM-0050 | 100% |  |  |  |  |  |  |  |  |
| 823B-A-SPM-0070 |  | Implement Specified Plans and satisfactorily confirmed by Engineer | 147d | 2011-08-29 A | 2012-02-25 A | 823B-A-SPM-0060 | 100% |  |  |  |  |  |  |  |  |
| 823B-A-SPM-0080 |  | Implement Specified Plans and satisfactorily confirmed by Engineer | 148d | 2012-02-27 A | 2012-08-25 A | 823B-A-SPM-0070 | 100% |  |  |  |  |  |  |  |  |
| 823B-A-SPM-0090 |  | Implement Specified Plans and satisfactorily confirmed by Engineer | 171d | 2012-08-27 A | 2013-03-23 A | 823B-A-SPM-0080 | 100% |  |  |  |  |  |  |  |  |
| 823B-A-SPM-0100 |  | Implement Specified Plans and satisfactorily confirmed by Engineer | 124d | 2013-03-25 A | 2013-08-24 A | 823B-A-SPM-0090 | 100% |  |  |  |  |  |  |  |  |
| 823B-A-SPM-0110 |  | Implement Specified Plans and satisfactorily confirmed by Engineer | 177d | 2013-08-26 A | 2014-03-29 A | 823B-A-SPM-0100 | 100% |  |  |  |  |  |  |  |  |
|  | 9 | **O&M Manuals and As-Built Drawings** |  | 2014-09-12 | 2017-02-11 |  |  |  |  |  |  |  |  |  |  |
| 823B-A-OMM-0010 |  | Prepare and Submit Draft Operation and Maintenance Manual [PS33.1] | 30d | 2014-09-12 A | 2014-10-03 A | 823B-ERS-A2-PBN-4000 FS+10d | 100% |  | 2015-04-20 | 2015-05-26 |  |  |  |  |  |
| 823B-A-OMM-0020 |  | Review and approval period of Draft Operation and Maintenance Manual | 30d | 2014-10-04 A | 2015-06-22 A | 823B-A-OMM-0010 | 100% |  | 2015-05-27 | 2015-07-03 |  |  |  |  |  |
| 823B-A-OMM-0030 |  | Prepare and Submit Final Operation and Maintenance Manual [PS33.1] | 30d | 2015-06-23 A | 2016-10-01 | 823B-A-OMM-0020 | 97% | 1d | 2015-06-23 | 2015-07-28 | -613d | 0d |  |  |  |
| 823B-A-OMM-0050 |  | Provide Engineer with As-Built Drawing for the Whole of the Works [PS33.2] | 30d | 2015-06-23 A | 2016-10-04 | 823B-A-OMM-0030 SS | 90% | 3d | 2015-06-23 | 2015-07-28 | -613d | 0d |  |  |  |
| 823B-A-OMM-0040 |  | Review and approval period of Final Operation and Maintenance Manual | 30d | 2015-10-02 A | 2016-11-04 | 823B-A-OMM-0030, 823B-A-OMM-0070 FF | 70% | 9d | 2015-10-13 | 2015-11-17 | -529d | 84d |  |  |  |
| 823B-A-OMM-0060 |  | Review and approval of As-Built Drawing for the Whole of the Works | 30d | 2015-10-02 A | 2017-02-11 | 823B-A-OMM-0050 FS+90d | 30% | 21d | 2016-01-29 | 2016-03-03 | -613d | 0d |  |  |  |
| 823B-A-OMM-0070 |  | Provide Engineer with Asset Registration Information [PS33.3] | 30d | 2016-10-01 | 2016-11-04 | 823B-A-OMM-0050 SS+30d |  |  |  |  | -529d | 0d |  | 2015-12-01 |  |
|  | B | **SITE CLEARANCE & INSTRUMENTATION** |  | 2010-10-25 | 2015-04-25 |  |  |  |  |  |  |  |  |  |  |
|  | 01 | **Demolition and Site Clearance** |  | 2010-10-25 | 2012-08-25 |  |  |  |  |  |  |  |  |  |  |
| 823B-B-DSC-0010 |  | Site Clearance Works | 150d | 2010-11-24 A | 2011-05-31 A |  | 100% |  |  |  |  |  | Backhoe [31104 h]; Grab Lorry [19440 h]; Labour [124416 h]; Plant Operator [31104 h]; Truck Driver [31104 h]; Tipping Lorry [15552 h]; Activity Weighting [478] |  | 823B_AB |
| 823B-B-DSC-0020 |  | Demolition of EBS (with no presence of asbestos) | 169d | 2010-11-24 A | 2011-06-23 A | 823B-B-DSC-0010 SS | 100% |  |  |  |  |  | Labour [102060 h]; Backhoe [17010 h]; Plant Operator [17010 h]; Activity Weighting [418] |  | 823B_AB |
| 823B-B-DSC-0030 |  | Demolition of EBS (with presence of asbestos) | 102.75d | 2011-01-27 A | 2011-06-07 A |  | 100% |  |  |  |  |  | Activity Weighting [140]; Backhoe [3276 h]; Labour [19656 h]; Plant Operator [3276 h] |  | 823B_AB |
| 823B-B-DSC-0040 |  | Site Clearance Works for WA 4.4, 4.5 & 4.7 and Utility diversion | 185.5d | 2012-01-10 A | 2012-08-25 A |  | 100% |  |  |  |  |  | Backhoe [1944 h]; Grab Lorry [1944 h]; Tipping Lorry [1944 h]; Labour [15552 h]; Truck Driver [3888 h]; Plant Operator [1944 h]; Activity Weighting [358] |  | 823B_AB |

| ID | WBS | Activity | Duration | Start | Finish | Predecessors | Complete | Planned start | Planned finish | Resources | 823B_As-built |
| --- | --- | --- | --- | --- | --- | --- | --- | --- | --- | --- | --- |
|  | 1 | **Archaeology Survey and Rescue Operation (for inaccessible area)** |  | 2010-10-25 | 2011-05-16 |  |  |  |  |  |  |
| 823B-B-DSC-0060 |  | Permit Applications (incl. License to Search and Excavate Antiquities and Excavation Permit) | 54d | 2010-10-25 A | 2010-12-28 A |  | 100% |  |  | Activity Weighting [478] | 823B_AB |
| 823B-B-DSC-0050 |  | Rescue excavation for archaeology @ TP4 | 60.25d | 2011-02-28 A | 2011-05-16 A | 823B-B-DSC-0010 SS | 100% |  |  | Activity Weighting [896] | 823B_AB |
|  | 1 | **North Zone** |  | 2010-11-29 | 2011-03-11 |  |  |  |  |  |  |
| 823B-B-DSC-0070 |  | Check for underground utilities | 82d | 2010-11-29 A | 2011-03-10 A | 823B-B-DSC-0060 SS | 100% |  |  | Activity Weighting [60] | 823B_AB |
| 823B-B-DSC-0080 |  | Field walking and hand augering (5 nos.) | 82d | 2010-11-29 A | 2011-03-10 A | 823B-B-DSC-0070 SS | 100% |  |  | Activity Weighting [60] | 823B_AB |
| 823B-B-DSC-0090 |  | Excavation of trial pits (3 nos. + 5 nos. supplementary) | 82d | 2010-11-29 A | 2011-03-10 A | 823B-B-DSC-0080 SS | 100% |  |  | Activity Weighting [119] | 823B_AB |
| 823B-B-DSC-0100 |  | Rescue excavation works (if required) | 1d | 2011-03-11 A | 2011-03-11 A | 823B-B-DSC-0090 | 100% |  |  | Activity Weighting [896] | 823B_AB |
|  | 2 | **Middle Zone** |  | 2010-11-24 | 2010-11-29 |  |  |  |  |  |  |
| 823B-B-DSC-0110 |  | Check for underground utilities | 4d | 2010-11-24 A | 2010-11-27 A | 823B-B-DSC-0060 | 100% |  |  | Activity Weighting [60] | 823B_AB |
| 823B-B-DSC-0120 |  | Field walking and hand augering (1 nos.) | 4d | 2010-11-24 A | 2010-11-27 A | 823B-B-DSC-0110 SS | 100% |  |  | Activity Weighting [20] | 823B_AB |
| 823B-B-DSC-0130 |  | Excavation of trial pits (4 nos. supplementary) | 4d | 2010-11-24 A | 2010-11-27 A | 823B-B-DSC-0120 SS | 100% |  |  | Activity Weighting [60] | 823B_AB |
| 823B-B-DSC-0140 |  | Rescue excavation works (if required) | 1d | 2010-11-29 A | 2010-11-29 A | 823B-B-DSC-0130 | 100% |  |  | Activity Weighting [896] | 823B_AB |
|  | 3 | **South Zone** |  | 2010-11-30 | 2011-02-26 |  |  |  |  |  |  |
| 823B-B-DSC-0150 |  | Check for underground utilities | 70d | 2010-11-30 A | 2011-02-25 A | 823B-B-DSC-0060 | 100% |  |  | Activity Weighting [60] | 823B_AB |
| 823B-B-DSC-0160 |  | Field walking and hand augering (5 nos.) | 70d | 2010-11-30 A | 2011-02-25 A | 823B-B-DSC-0150 SS | 100% |  |  | Activity Weighting [60] | 823B_AB |
| 823B-B-DSC-0170 |  | Excavation of trial pits (1 nos. + 5 nos. supplementary) | 70d | 2010-11-30 A | 2011-02-25 A | 823B-B-DSC-0160 SS | 100% |  |  | Activity Weighting [80] | 823B_AB |
| 823B-B-DSC-0180 |  | Rescue excavation works (if required) | 1d | 2011-02-26 A | 2011-02-26 A | 823B-B-DSC-0170 | 100% |  |  | Activity Weighting [896] | 823B_AB |
|  | 02 | **Instrumentation and Monitoring** |  | 2011-02-17 | 2015-04-25 |  |  |  |  |  |  |
| 823B-B-IAM-0010 |  | Installation of Instrumentation - North Zone [PS30.4.3] | 127d | 2011-02-17 A | 2011-07-23 A | 823B-B-DSC-0010 SS+36d | 100% |  |  | Drill Rig [19440 h]; Labour [38880 h]; Plant Operator [19440 h]; Rigger [19440 h]; Activity Weighting [269] |  |
| 823B-B-IAM-0070 |  | Installation of Instrumentation - South Zone [PS30.4.3] | 61d | 2011-04-30 A | 2011-07-14 A | 823B-B-DSC-0010 SS+94d | 100% |  |  | Activity Weighting [179] |  |
| 823B-B-IAM-0020 |  | Baseline Reading | 60d | 2011-05-18 A | 2011-07-28 A | 823B-B-IAM-0010 SS+71d | 100% |  |  | Labour [7776 h] |  |
| 823B-B-IAM-0040 |  | Installation of Instrumentation - Middle Zone [PS30.4.3] | 26d | 2011-05-24 A | 2011-06-23 A | 823B-B-DSC-0010 SS+112d | 100% |  |  | Activity Weighting [219] |  |
| 823B-B-IAM-0080 |  | Baseline Reading | 37d | 2011-06-03 A | 2011-07-18 A | 823B-B-IAM-0070 SS+27d | 100% |  |  |  |  |
| 823B-B-IAM-0050 |  | Baseline Reading | 24d | 2011-06-07 A | 2011-07-05 A | 823B-B-IAM-0040 SS+11d | 100% |  |  |  |  |
| 823B-B-IAM-0090 |  | Submit Baseline Reading Report to the Engineer | 34d | 2011-06-10 A | 2011-07-20 A | 823B-B-IAM-0080 SS+5d | 100% |  |  |  |  |
| 823B-B-IAM-0060 |  | Submit Baseline Reading Report to the Engineer | 22d | 2011-06-13 A | 2011-07-08 A | 823B-B-IAM-0050 SS+5d | 100% |  |  |  |  |
| 823B-B-IAM-0030 |  | Submit Baseline Reading Report to the Engineer | 6d | 2011-07-29 A | 2011-08-04 A | 823B-B-IAM-0020 | 100% |  |  |  |  |
| 823B-B-IAM-0100 |  | Regular Monitoring and submit monitoring report | 211d | 2011-08-05 A | 2012-04-21 A | 823B-B-IAM-0030, 823B-B-IAM-0060, 823B-B-IAM-0090 | 100% |  |  | Skilled Labour [121500 h] |  |
| 823B-B-IAM-0110 |  | Regular Monitoring and submit monitoring report | 155d | 2012-04-23 A | 2012-10-27 A | 823B-B-IAM-0100 | 100% |  |  | Skilled Labour [72900 h] |  |
| 823B-B-IAM-0120 |  | Regular Monitoring and submit monitoring report | 146d | 2012-10-29 A | 2013-04-27 A | 823B-B-IAM-0110 | 100% |  |  | Skilled Labour [72900 h] |  |
| 823B-B-IAM-0130 |  | Regular Monitoring and submit monitoring report | 149d | 2013-04-29 A | 2013-10-26 A | 823B-B-IAM-0120 | 100% |  |  | Skilled Labour [72900 h] |  |
| 823B-B-IAM-0140 |  | Regular Monitoring and submit monitoring report | 146d | 2013-10-28 A | 2014-04-26 A | 823B-B-IAM-0130 | 100% |  |  | Skilled Labour [72900 h] |  |
| 823B-B-IAM-0150 |  | Regular Monitoring and submit monitoring report | 149d | 2014-04-28 A | 2014-10-25 A | 823B-B-IAM-0140 | 100% |  |  | Skilled Labour [72900 h] |  |
| 823B-B-IAM-0160 |  | Regular Monitoring and submit monitoring report | 146d | 2014-10-27 A | 2015-04-25 A | 823B-B-IAM-0150 | 100% | 2014-11-25 | 2015-05-27 | Skilled Labour [72900 h] |  |

| ID | WBS | Activity | Duration | Start | Finish | Predecessors | Complete | Planned start | Planned finish | Resources | user_text4 | user_text6 | user_text7 | user_integer1 | user_text1 | user_text5 | 823B_As-built |
| --- | --- | --- | --- | --- | --- | --- | --- | --- | --- | --- | --- | --- | --- | --- | --- | --- | --- |
|  | C | **EMERGENCY RESCUE SIDINGS (ERS)** |  | 2011-02-07 | 2015-09-02 |  |  |  |  |  |  |  |  |  |  |  |  |
|  | 1 | **AREA 1 - CH123+525 to CH123+617** |  | 2011-03-14 | 2014-09-01 |  |  |  |  |  |  |  |  |  |  |  |  |
|  | 1 | **D-Wall Construction** |  | 2011-03-14 | 2012-12-04 |  |  |  |  |  |  |  |  |  |  |  |  |
| 823B-ERS-A1-DW-1010 |  | D-wall construction (incl UU Deck, UU Deck 2 & Traffic Deck 1) (7,792m³ conc) | 496d | 2011-03-14 A | 2012-11-13 A | 823B-AC-0095, 823B-AC-0100, 823B-AC-0105, 823B-AC-0110, 823B-AC-0115, 823B-A-PWS-0240, 823B-A-PWS-0140, 823B-A-PWS-0150, 823B-A-PWS-0160, 823B-A-PWS-0170, 823B-A-TWS-0110, 823B-A-PWS-0430, 823B-DP006-070 | 100% |  |  | Concrete [7792 Cu m] | 7792 | 100% | 100% | 7792 | m3 | 7792 | 823B_AB |
| 823B-ERS-A1-DW-1020 |  | Pumping test | 18d | 2012-11-14 A | 2012-12-04 A | 823B-ERS-A1-DW-1010 | 100% |  |  |  |  | 100% | 100% |  |  |  | 823B_AB |
|  | 2 | **ELS Works** |  | 2012-11-12 | 2013-09-14 |  |  |  |  |  |  |  |  |  |  |  |  |
| 823B-ERS-A1-ELS-1010 |  | Excavation (8,382m³) | 17d | 2012-11-12 A | 2012-11-30 A | 823B-DP002-070, 823B-ERS-A1-DW-1010 | 100% |  |  | Bulk Excavation [8382 Cu m]; Excavation [8382 Cu m] | 8382 | 100% | 100% | 8382 | m3 | 8382 | 823B_AB |
| 823B-ERS-A1-ELS-1020 |  | Bulk excavation Stage 1 (+9.5mPD) (5,811m³) | 5d | 2012-12-11 A | 2013-01-05 A | 823B-ERS-A2-ELS-1020 SS+1d, 823B-DP002-070, 823B-ERS-A1-ELS-1010 | 100% | 2012-12-14 | 2012-12-19 | Bulk Excavation [5811 Cu m]; Excavation [5811 Cu m] | 5811 | 100% | 100% | 5811 | m3 | 5811 | 823B_AB |
| 823B-ERS-A1-ELS-1030 |  | S1 Strut | 6d | 2012-12-13 A | 2013-03-28 A | 823B-ERS-A1-ELS-1020 SS+2d | 100% | 2012-12-17 | 2012-12-22 |  |  | 100% | 100% |  |  |  | 823B_AB |
| 823B-ERS-A1-ELS-1040 |  | Bulk excavation Stage 2 (+5.0mPD) (10,048m³) | 12d | 2013-01-07 A | 2013-02-16 A | 823B-ERS-A1-ELS-1030 | 100% | 2012-12-24 | 2013-01-09 | Bulk Excavation [10048 Cu m]; Excavation [10048 Cu m] | 10048 | 100% | 100% | 10048 | m3 | 10048 | 823B_AB |
| 823B-ERS-A1-ELS-1050 |  | S2 Waling & Strut | 9d | 2013-01-18 A | 2013-07-27 A | 823B-ERS-A1-ELS-1040 | 100% | 2013-01-10 | 2013-01-19 |  |  | 100% | 100% |  |  |  | 823B_AB |
| 823B-ERS-A1-ELS-1060 |  | Bulk excavation Stage 3 (+0.5mPD) (5,186m³) | 7d | 2013-02-05 A | 2013-05-18 A | 823B-ERS-A1-ELS-1050 FS+7d | 100% | 2013-01-29 | 2013-02-05 | Bulk Excavation [5186 Cu m]; Excavation [5186 Cu m] | 5186 | 100% | 100% | 5186 | m3 | 5186 | 823B_AB |
| 823B-ERS-A1-ELS-1070 |  | S3 Waling & Strut | 6d | 2013-02-21 A | 2013-06-26 A | 823B-ERS-A1-ELS-1060, 823B-ERS-A2-ELS-1070 SS+4d | 100% | 2013-02-14 | 2013-02-20 |  |  | 100% | 100% |  |  |  | 823B_AB |
| 823B-ERS-A1-ELS-1080 |  | Bulk excavation Stage 4 (-3.5mPD) (1,058m³) | 2d | 2013-04-22 A | 2013-04-30 A | 823B-ERS-A1-ELS-1070, 823B-ERS-A2-ELS-1070 | 100% | 2013-02-23 | 2013-02-25 | Bulk Excavation [1058 Cu m]; Excavation [1058 Cu m] | 1058 | 100% | 100% | 1058 | m3 | 1058 | 823B_AB |
| 823B-ERS-A1-ELS-1100 |  | Bulk excavation Stage 5 (-6.0mPD) (340m³) | 1d | 2013-05-08 A | 2013-05-09 A | 823B-ERS-A1-ELS-1090, 823B-ERS-A2-ELS-1090 | 100% | 2013-03-12 | 2013-03-12 | Bulk Excavation [340 Cu m]; Excavation [340 Cu m] | 340 | 100% | 100% | 340 | m3 | 340 | 823B_AB |
| 823B-ERS-A1-ELS-1110 |  | Bulk excavation Stage 6 (-6.0mPD) (3,510m³) | 6d | 2013-05-10 A | 2013-05-16 A | 823B-ERS-A1-ELS-1100, 823B-ERS-A2-ELS-1110 | 100% | 2013-03-19 | 2013-03-25 | Bulk Excavation [3510 Cu m]; Excavation [3510 Cu m] | 3510 | 100% | 100% | 3510 | m3 | 3510 | 823B_AB |
| 823B-ERS-A1-ELS-1140 |  | Bulk excavation Stage 7 (-6.0mpD) (5,440m³) | 14d | 2013-05-17 A | 2013-09-03 A | 823B-ERS-A1-ELS-1120 | 100% | 2013-03-28 | 2013-04-17 | Bulk Excavation [5440 Cu m]; Excavation [5440 Cu m] | 5440 | 100% | 100% | 5440 | m3 | 5440 | 823B_AB |
| 823B-ERS-A1-ELS-1090 |  | S4 Waling & Strut | 1d | 2013-06-17 A | 2013-06-29 A | 823B-ERS-A1-ELS-1080, 823B-ERS-A2-ELS-1080 | 100% | 2013-03-11 | 2013-03-11 |  |  | 100% | 100% |  |  |  | 823B_AB |
| 823B-ERS-A1-ELS-1120 |  | S4 Waling & Strut | 2d | 2013-06-17 A | 2013-06-18 A | 823B-ERS-A1-ELS-1110 | 100% | 2013-03-26 | 2013-03-27 |  |  | 100% | 100% |  |  |  | 823B_AB |
| 823B-ERS-A1-ELS-1130 |  | Earth Mat @ Bay 5 & 4 | 12d | 2013-06-19 A | 2013-07-04 A | 823B-ERS-A1-ELS-1120, 823B-ERS-A2-ELS-1160 | 100% | 2013-04-09 | 2013-04-22 |  |  | 100% | 100% |  |  |  | 823B_AB |
| 823B-ERS-A1-ELS-1150 |  | S3 Strut | 6d | 2013-07-02 A | 2013-08-02 A | 823B-ERS-A1-ELS-1140 | 100% | 2013-04-18 | 2013-04-24 |  |  | 100% | 100% |  |  |  | 823B_AB |
| 823B-ERS-A1-ELS-1170 |  | Bulk excavation Stage 8 (-6.0mpD) (8,100m³) | 21d | 2013-08-01 A | 2013-09-03 A | 823B-ERS-A1-ELS-1140 SS+8d | 100% | 2013-04-11 | 2013-05-06 | Bulk Excavation [8100 Cu m]; Excavation [8100 Cu m] | 8100 | 100% | 100% | 8100 | m3 | 8100 | 823B_AB |
| 823B-ERS-A1-ELS-1200 |  | Bulk excavation Stage 9 (4,185m³) | 17d | 2013-08-01 A | 2013-09-02 A | 823B-ERS-A1-ELS-1170 SS | 100% | 2013-04-11 | 2013-04-30 | Bulk Excavation [4185 Cu m]; Excavation [4185 Cu m] | 4185 | 100% | 100% | 4185 | m3 | 4185 | 823B_AB |
| 823B-ERS-A1-ELS-1210 |  | S2, S3 & S4 Strut | 7d | 2013-08-21 A | 2013-08-28 A | 823B-ERS-A1-ELS-1200 | 100% | 2013-05-02 | 2013-05-09 |  |  | 100% | 100% |  |  |  | 823B_AB |
| 823B-ERS-A1-ELS-1180 |  | S2, S3 & S4 Strut | 9d | 2013-08-26 A | 2013-09-05 A | 823B-ERS-A1-ELS-1170 | 100% | 2013-05-07 | 2013-05-16 |  |  | 100% | 100% |  |  |  | 823B_AB |
| 823B-ERS-A1-ELS-1160 |  | Earth Mat @ Bay 4 & 3 | 11d | 2013-09-03 A | 2013-09-14 A | 823B-ERS-A1-ELS-1150 | 100% | 2013-04-25 | 2013-05-08 |  |  | 100% | 100% |  |  |  | 823B_AB |
| 823B-ERS-A1-ELS-1190 |  | Earth Mat @ Bay 3 | 10d | 2013-09-03 A | 2013-09-14 A | 823B-ERS-A1-ELS-1180 | 100% | 2013-05-18 | 2013-05-29 |  |  | 100% | 100% |  |  |  | 823B_AB |

| ID | WBS | Activity | Duration | Start | Finish | Predecessors | Complete | Planned start | Planned finish | Constraint | Calendar | Resources | user_text4 | user_text6 | user_text7 | user_integer1 | user_text1 | user_text5 | 823B_As-built |
| --- | --- | --- | --- | --- | --- | --- | --- | --- | --- | --- | --- | --- | --- | --- | --- | --- | --- | --- | --- |
|  | 3 | **Tunnel Structure** |  | 2013-07-05 | 2014-09-01 |  |  |  |  |  |  |  |  |  |  |  |  |  |  |
| 823B-ERS-A1-RT-1040 |  | Running Tunnel (Bay 5) - WP+BS (810m³ conc) | 11d | 2013-07-05 A | 2013-07-18 A | 823B-ERS-A1-ELS-1130, 823B-ERS-CNP-0010 | 100% | 2013-04-23 | 2013-05-06 |  |  | Concrete [810 Cu m]; Rebar [106 t] | 810 | 100% | 100% | 810 | m3 | 810 | 823B_AB |
| 823B-ERS-A1-RT-1050 |  | Running Tunnel (Bay 5) - Wall & Roof (593m³ conc) | 17d | 2013-08-01 A | 2013-09-19 A | 823B-ERS-A1-RT-1040 | 100% | 2013-05-07 | 2013-05-27 |  |  | Concrete [593 Cu m]; Rebar [78 t] | 593 | 100% | 100% | 593 | m3 | 593 | 823B_AB |
| 823B-ERS-A1-RT-1010 |  | Running Tunnel (Bay 1) - WP+BS (458m³ conc) | 16d | 2013-09-03 A | 2013-09-14 A | 823B-ERS-A1-ELS-1210 | 100% | 2013-05-10 | 2013-05-29 |  |  | Concrete [458 Cu m]; Backfilling [629 Cu m]; Rebar [60 t] | 458 | 100% | 100% | 458 | m3 | 458 | 823B_AB |
| 823B-ERS-A1-RT-1160 |  | Running Tunnel (Bay 2) - WP+BS (486m³ conc) | 16d | 2013-09-03 A | 2013-09-18 A | 823B-ERS-A1-RT-1010 | 100% | 2013-05-30 | 2013-06-18 |  |  | Concrete [486 Cu m]; Backfilling [668 Cu m]; Rebar [64 t] | 486 | 100% | 100% | 486 | m3 | 486 | 823B_AB |
| 823B-ERS-A1-RT-1020 |  | Running Tunnel (Bay 1) - Wall & Roof (521m³ conc) | 15d | 2013-09-16 A | 2013-11-28 A | 823B-ERS-A1-RT-1010 | 100% | 2013-05-30 | 2013-06-17 |  |  | Concrete [521 Cu m]; Rebar [68 t] | 521 | 100% | 100% | 521 | m3 | 521 | 823B_AB |
| 823B-ERS-A1-RT-1060 |  | Running Tunnel (Bay 5) - Plenum (940m³ conc) | 12d | 2013-09-23 A | 2013-12-03 A | 823B-ERS-A1-RT-1050 | 100% | 2013-05-28 | 2013-06-10 |  |  | Concrete [940 Cu m]; Rebar [123 t] | 940 | 100% | 100% | 940 | m3 | 940 | 823B_AB |
| 823B-ERS-A1-RT-1120 |  | Running Tunnel (Bay 3) - WP+BS (810m³ conc) | 11d | 2013-09-23 A | 2013-10-03 A | 823B-ERS-A1-ELS-1190 | 100% | 2013-05-30 | 2013-06-11 |  |  | Concrete [810 Cu m]; Backfilling [1114 Cu m]; Rebar [106 t] | 810 | 100% | 100% | 810 | m3 | 810 | 823B_AB |
| 823B-ERS-A1-RT-1170 |  | Running Tunnel (Bay 2) - Wall & Roof (553m³ conc) | 12d | 2013-09-23 A | 2013-11-02 A | 823B-ERS-A1-RT-1160 | 100% | 2013-06-19 | 2013-07-03 |  |  | Concrete [553 Cu m]; Backfilling [323 Cu m]; Rebar [73 t] | 553 | 100% | 100% | 553 | m3 | 553 | 823B_AB |
| 823B-ERS-A1-RT-1080 |  | Running Tunnel (Bay 4) - WP+BS (810m³ conc) | 15d | 2013-10-02 A | 2013-10-05 A | 823B-ERS-A1-ELS-1160 FS+2d | 100% | 2013-05-11 | 2013-05-29 |  |  | Concrete [810 Cu m]; Rebar [106 t] | 810 | 100% | 100% | 810 | m3 | 810 | 823B_AB |
| 823B-ERS-A1-RT-1200 |  | Running Tunnel (Bay 5 to 1) - Mass Concrete (invert & walkway) (1,812m³ conc) | 29d | 2013-10-02 A | 2013-12-02 A | 823B-ERS-A2-RT-1090 | 100% | 2013-07-02 | 2013-08-03 |  |  | Concrete [1812 Cu m] | 1812 | 100% | 100% | 1812 | m3 | 1812 | 823B_AB |
| 823B-ERS-A1-RT-1130 |  | Running Tunnel (Bay 3) - Wall & Roof (921m³ conc) | 17d | 2013-10-03 A | 2013-11-28 A | 823B-ERS-A1-RT-1120 | 100% | 2013-06-13 | 2013-07-03 |  |  | Concrete [921 Cu m]; Backfilling [538 Cu m]; Rebar [120 t] | 921 | 100% | 100% | 921 | m3 | 921 | 823B_AB |
| 823B-ERS-A1-RT-1090 |  | Running Tunnel (Bay 4) - Wall & Roof (593m³ conc) | 17d | 2013-10-07 A | 2013-11-01 A | 823B-ERS-A1-RT-1080 | 100% | 2013-05-30 | 2013-06-19 |  |  | Concrete [593 Cu m]; Rebar [78 t] | 593 | 100% | 100% | 593 | m3 | 593 | 823B_AB |
| 823B-ERS-A1-RT-1180 |  | Running Tunnel (Bay 2) - Plenum (486m³ conc) | 12d | 2013-11-04 A | 2013-12-07 A | 823B-ERS-A1-RT-1170 | 100% | 2013-07-04 | 2013-07-17 |  |  | Concrete [486 Cu m]; Rebar [64 t] | 486 | 100% | 100% | 486 | m3 | 486 | 823B_AB |
| 823B-ERS-A1-RT-1030 |  | Running Tunnel (Bay 1) - Backfilling (269m³ backfill) | 21d | 2013-12-02 A | 2014-02-14 A | 823B-ERS-A1-RT-1020, 823B-ERS-A1-RT-1160 | 100% | 2013-06-19 | 2013-07-13 |  |  | Backfilling [269 Cu m] | 269 | 100% | 100% | 269 | m3 | 269 | 823B_AB |
| 823B-ERS-A1-RT-1140 |  | Running Tunnel (Bay 3) - Plenum (954m³ conc) | 12d | 2013-12-02 A | 2014-01-23 A | 823B-ERS-A1-RT-1130 | 100% | 2013-07-04 | 2013-07-17 |  |  | Concrete [954 Cu m]; Rebar [124 t] | 954 | 100% | 100% | 954 | m3 | 954 | 823B_AB |
| 823B-ERS-A1-RT-1070 |  | Running Tunnel (Bay 5) - Backfilling (3,289m³ backfill) | 22d | 2013-12-04 A | 2013-12-31 A | 823B-ERS-A1-RT-1060 | 100% | 2013-06-11 | 2013-07-08 |  |  | Backfilling [3289 Cu m] | 3289 | 100% | 100% | 3289 | m3 | 3289 | 823B_AB |
| 823B-ERS-A1-RT-1100 |  | Running Tunnel (Bay 4) - Plenum (940m³ conc) | 12d | 2014-01-02 A | 2014-01-27 A | 823B-ERS-A1-RT-1090 | 100% | 2013-06-20 | 2013-07-04 |  |  | Concrete [940 Cu m]; Rebar [123 t] | 940 | 100% | 100% | 940 | m3 | 940 | 823B_AB |
| 823B-ERS-A1-RT-1110 |  | Running Tunnel (Bay 4) - Backfilling (3,289m³ backfill) | 22d | 2014-02-17 A | 2014-03-05 A | 823B-ERS-A1-RT-1100, 823B-ERS-A1-RT-1070 | 100% | 2013-07-09 | 2013-08-02 |  |  | Backfilling [3289 Cu m] | 3289 | 100% | 100% | 3289 | m3 | 3289 | 823B_AB |
| 823B-ERS-A1-RT-1150 |  | Running Tunnel (Bay 3) - Backfilling (3,289m³ backfill) | 15d | 2014-02-24 A | 2014-09-01 A | 823B-ERS-A1-RT-1140 | 100% | 2013-07-18 | 2013-08-03 |  |  | Backfilling [3289 Cu m] | 3289 | 100% | 100% | 3289 | m3 | 3289 | 823B_AB |
| 823B-ERS-A1-RT-1190 |  | Running Tunnel (Bay 2) - Backfilling (1,974m³ backfill) | 15d | 2014-02-24 A | 2014-09-01 A | 823B-ERS-A1-RT-1180, 823B-ERS-A1-RT-1030 | 100% | 2013-07-18 | 2013-08-03 |  |  | Backfilling [1974 Cu m] | 1974 | 100% | 100% | 1974 | m3 | 1974 | 823B_AB |
| 823B-ERS-A1-RT-1210 |  | Running Tunnel (Bay 1 to 3) - Cable bracket installation | 18d | 2014-04-01 A | 2014-04-25 A | 823B-ERS-A1-RT-1030 | 100% |  |  |  |  |  |  | 100% | 100% |  |  |  | 823B_AB |
| 823B-ERS-A1-RT-1220 |  | Running Tunnel (Bay 5 & 4) - Cable bracket installation | 18d | 2014-04-01 A | 2014-04-25 A | 823B-ERS-A1-RT-1070, 823B-ERS-A1-RT-1210 SS | 100% |  |  |  |  |  |  | 100% | 100% |  |  |  | 823B_AB |
|  | 2 | **AREA 2 - CH123+617 to CH123+780** |  | 2011-02-11 | 2015-09-02 |  |  |  |  |  |  |  |  |  |  |  |  |  |  |
|  | 3 | **D-Wall Construction** |  | 2011-02-11 | 2013-01-09 |  |  |  |  |  |  |  |  |  |  |  |  |  |  |
| 823B-ERS-A2-DW-1010 |  | D-wall construction completed (incl socket H-pile) (12,158m³ conc) | 510d | 2011-02-11 A | 2012-10-30 A | 823B-AC-0095, 823B-AC-0100, 823B-AC-0105, 823B-AC-0110, 823B-AC-0115, 823B-A-PWS-0240, 823B-A-PWS-0140, 823B-A-PWS-0150, 823B-A-PWS-0160, 823B-A-PWS-0170, 823B-A-TWS-0110, 823B-A-PWS-0670, 823B-A-PWS-0430 | 100% |  |  |  |  | Concrete [12158 Cu m] | 12158 | 100% | 100% | 12158 | m3 | 12158 | 823B_AB |
| 823B-ERS-A2-DW-1020 |  | Socketed H-Pile (P7E) | 99d | 2012-07-30 A | 2012-11-24 A |  | 100% |  |  |  |  |  |  | 100% | 100% |  |  |  | 823B_AB |
| 823B-ERS-A2-DW-1060 |  | Site/Area preparation for Bridge #7 works | 14d | 2012-11-12 A | 2012-11-27 A |  | 100% |  |  | start on 2012-11-12 |  |  |  | 100% | 100% |  |  |  | 823B_AB |
| 823B-ERS-A2-DW-1070 |  | Bridge #7 | 34d | 2012-11-28 A | 2013-01-09 A | 823B-ERS-A2-DW-1060 | 100% |  |  |  |  |  |  | 100% | 100% |  |  |  | 823B_AB |
| 823B-ERS-A2-DW-1030 |  | Additional H-Pile | 6d | 2012-12-01 A | 2012-12-07 A | 823B-ERS-A2-DW-1020 | 100% |  |  |  |  |  |  | 100% | 100% |  |  |  | 823B_AB |
| 823B-ERS-A2-DW-1040 |  | BD Pile selection | 7d | 2012-12-08 A | 2012-12-15 A | 823B-ERS-A2-DW-1030 | 100% |  |  |  |  |  |  | 100% | 100% |  |  |  | 823B_AB |
| 823B-ERS-A2-DW-1050 |  | Pile Loading Test | 14d | 2012-12-16 A | 2012-12-29 A | 823B-ERS-A2-DW-1040 | 100% |  |  |  | 823B (7 days - 9 hours) |  |  | 100% | 100% |  |  |  | 823B_AB |

| ID | WBS | Activity | Duration | Start | Finish | Predecessors | Complete | Planned start | Planned finish | Resources | user_text4 | user_text6 | user_text7 | user_integer1 | user_text1 | user_text5 | 823B_As-built |
| --- | --- | --- | --- | --- | --- | --- | --- | --- | --- | --- | --- | --- | --- | --- | --- | --- | --- |
|  | 1 | **Bottom Up (CH123+617 to CH123+698)** |  | 2012-10-10 | 2015-09-02 |  |  |  |  |  |  |  |  |  |  |  |  |
|  | 1 | **ELS Works** |  | 2012-10-10 | 2013-09-06 |  |  |  |  |  |  |  |  |  |  |  |  |
| 823B-ERS-A2-ELS-1010 |  | Excavation (4,804m³) | 44d | 2012-10-10 A | 2012-11-30 A | 823B-DP002-070, 823B-ERS-A1-DW-1020, 823B-ERS-A2-DW-1010, 823B-ERS-A2-DW-1070 | 100% |  |  | Excavation [4804 Cu m]; Bulk Excavation [4804 Cu m] | 4804 | 100% | 100% | 4804 | m3 | 4804 | 823B_AB |
| 823B-ERS-A2-ELS-1020 |  | Bulk excavation Stage 1 (+9.5mPD) (828m³) | 8d | 2012-12-10 A | 2012-12-11 A | 823B-ERS-A1-DW-1020, 823B-ERS-A2-DW-1010, 823B-ERS-A2-DW-1070 SS+13d, 823B-DP002-070 | 100% | 2012-12-13 | 2012-12-21 | Bulk Excavation [828 Cu m]; Excavation [828 Cu m] | 828 | 100% | 100% | 828 | m3 | 828 | 823B_AB |
| 823B-ERS-A2-ELS-1030 |  | Bulk excavation Stage A (+9.5mPD) (3,050m³) | 5d | 2012-12-12 A | 2013-01-04 A | 823B-ERS-A2-ELS-1020, 823B-ERS-A2-DW-1070 SS+26d, 823B-ERS-A2-DW-1050 | 100% | 2012-12-31 | 2013-01-05 | Bulk Excavation [3050 Cu m]; Excavation [3050 Cu m] | 3050 | 100% | 100% | 3050 | m3 | 3050 | 823B_AB |
| 823B-ERS-A2-ELS-1040 |  | S1 Strut | 12d | 2012-12-18 A | 2012-12-29 A | 823B-ERS-A2-ELS-1030 | 100% | 2013-01-07 | 2013-01-19 |  |  | 100% | 100% |  |  |  | 823B_AB |
| 823B-ERS-A2-ELS-1050 |  | Bulk excavation Stage 2 (+5.0mPD) (16,163m³) | 17d | 2013-01-14 A | 2013-04-13 A | 823B-ERS-A1-ELS-1040, 823B-ERS-A2-DW-1070, 823B-ERS-A2-ELS-1040 SS+1d | 100% | 2013-01-10 | 2013-01-29 | Bulk Excavation [16163 Cu m]; Excavation [16163 Cu m] | 16163 | 100% | 100% | 16163 | m3 | 16163 | 823B_AB |
| 823B-ERS-A2-ELS-1060 |  | S2 Waling & Strut | 14d | 2013-01-19 A | 2013-03-30 A | 823B-ERS-A2-ELS-1050 SS, 823B-ERS-A1-ELS-1050 | 100% | 2013-01-21 | 2013-02-05 |  |  | 100% | 100% |  |  |  | 823B_AB |
| 823B-ERS-A2-ELS-1070 |  | Bulk excavation Stage 3 (+0.5mPD) (13,914m³) | 12d | 2013-03-18 A | 2013-06-07 A | 823B-ERS-A2-ELS-1060, 823B-ERS-A1-ELS-1060 | 100% | 2013-02-06 | 2013-02-22 | Bulk Excavation [13914 Cu m]; Excavation [13914 Cu m] | 13914 | 100% | 100% | 13914 | m3 | 13914 | 823B_AB |
| 823B-ERS-A2-ELS-1080 |  | S3 Waling & Strut | 15d | 2013-03-28 A | 2013-06-15 A | 823B-ERS-A2-ELS-1070 SS, 823B-ERS-A1-ELS-1070 | 100% | 2013-02-21 | 2013-03-09 |  |  | 100% | 100% |  |  |  | 823B_AB |
| 823B-ERS-A2-ELS-1090 |  | Bulk excavation Stage 4 (-3.5mPD) (13,145m³) | 12d | 2013-04-15 A | 2013-06-15 A | 823B-ERS-A1-ELS-1080 | 100% | 2013-02-26 | 2013-03-11 | Bulk Excavation [13145 Cu m]; Excavation [13145 Cu m] | 13145 | 100% | 100% | 13145 | m3 | 13145 | 823B_AB |
| 823B-ERS-A2-ELS-1100 |  | S4 Waling & Strut | 10d | 2013-04-29 A | 2013-06-22 A | 823B-ERS-A2-ELS-1090 SS, 823B-ERS-A1-ELS-1090 | 100% | 2013-03-12 | 2013-03-22 |  |  | 100% | 100% |  |  |  | 823B_AB |
| 823B-ERS-A2-ELS-1110 |  | Bulk excavation Stage 5 (-6.0mPD) (4,621m³) | 5d | 2013-05-06 A | 2013-05-18 A | 823B-ERS-A2-ELS-1100 SS, 823B-ERS-A1-ELS-1100 | 100% | 2013-03-13 | 2013-03-18 | Bulk Excavation [4621 Cu m]; Excavation [4621 Cu m] | 4621 | 100% | 100% | 4621 | m3 | 4621 | 823B_AB |
| 823B-ERS-A2-ELS-1120 |  | Bulk excavation (-7.5mPD) (8,900m³) | 10d | 2013-05-20 A | 2013-07-25 A | 823B-ERS-A2-ELS-1100, 823B-ERS-A2-ELS-1110 | 100% | 2013-03-23 | 2013-04-08 | Bulk Excavation [8900 Cu m]; Excavation [8900 Cu m] | 8900 | 100% | 100% | 8900 | m3 | 8900 | 823B_AB |
| 823B-ERS-A2-ELS-1160 |  | Earthing Mat @ Bay 7 & 6 | 10d | 2013-06-01 A | 2013-06-11 A | 823B-ERS-A2-ELS-1100, 823B-ERS-A2-ELS-1110 | 100% | 2013-03-23 | 2013-04-08 |  |  | 100% | 100% |  |  |  | 823B_AB |
| 823B-ERS-A2-ELS-1130 |  | S6 & S7 Strut | 6d | 2013-07-22 A | 2013-08-06 A | 823B-ERS-A2-ELS-1120 | 100% | 2013-04-09 | 2013-04-15 |  |  | 100% | 100% |  |  |  | 823B_AB |
| 823B-ERS-A2-ELS-1140 |  | Bulk excavation (-9.5mPD) (1,400m³) | 6d | 2013-08-07 A | 2013-09-02 A | 823B-ERS-A2-ELS-1130 | 100% | 2013-04-16 | 2013-04-22 | Bulk Excavation [1400 Cu m]; Excavation [1400 Cu m] | 1400 | 100% | 100% | 1400 | m3 | 1400 | 823B_AB |
| 823B-ERS-A2-ELS-1150 |  | S7 Strut | 4d | 2013-09-03 A | 2013-09-06 A | 823B-ERS-A2-ELS-1140 | 100% | 2013-04-23 | 2013-04-26 |  |  | 100% | 100% |  |  |  | 823B_AB |
|  | 2 | **Tunnel Structure** |  | 2013-06-17 | 2014-04-25 |  |  |  |  |  |  |  |  |  |  |  |  |
| 823B-ERS-A2-RT-1010 |  | Running Tunnel (Bay 7) - WP+BS (871m³ conc) | 16d | 2013-06-17 A | 2013-07-05 A | 823B-ERS-A2-ELS-1160 SS+12d, 823B-ERS-CNP-0010 | 100% | 2013-04-11 | 2013-04-29 | Concrete [871 Cu m]; Rebar [106 t] | 871 | 100% | 100% | 871 | m3 | 871 | 823B_AB |
| 823B-ERS-A2-RT-1050 |  | Running Tunnel (Bay 6) - WP+BS (810m³ conc) | 11d | 2013-06-29 A | 2013-07-12 A | 823B-ERS-A2-RT-1010, 823B-ERS-A2-ELS-1160 | 100% | 2013-04-30 | 2013-05-13 | Concrete [810 Cu m]; Rebar [106 t] | 810 | 100% | 100% | 810 | m3 | 810 | 823B_AB |
| 823B-ERS-A2-RT-1060 |  | Running Tunnel (Bay 6) - Wall & Roof (593m³ conc) | 20d | 2013-07-13 A | 2013-09-17 A | 823B-ERS-A2-RT-1050, 823B-ERS-A2-RT-1020 | 100% | 2013-05-23 | 2013-06-15 | Concrete [593 Cu m]; Rebar [78 t] | 593 | 100% | 100% | 593 | m3 | 593 | 823B_AB |
| 823B-ERS-A2-RT-1020 |  | Running Tunnel (Bay 7) - Wall & Roof (927m³ conc) | 18d | 2013-08-01 A | 2013-09-03 A | 823B-ERS-A2-RT-1010 | 100% | 2013-04-30 | 2013-05-22 | Concrete [927 Cu m]; Rebar [113 t] | 927 | 100% | 100% | 927 | m3 | 927 | 823B_AB |
| 823B-ERS-A2-RT-1030 |  | Running Tunnel (Bay 7) - Plenum (1,011m³ conc) | 14d | 2013-09-04 A | 2013-10-07 A | 823B-ERS-A2-RT-1020 | 100% | 2013-05-23 | 2013-06-07 | Concrete [1011 Cu m]; Rebar [123 t] | 1011 | 100% | 100% | 1011 | m3 | 1011 | 823B_AB |
| 823B-ERS-A2-RT-1070 |  | Running Tunnel (Bay 6) - Plenum (940m³ conc) | 12d | 2013-09-18 A | 2013-10-24 A | 823B-ERS-A2-RT-1060 | 100% | 2013-06-17 | 2013-06-29 | Concrete [940 Cu m]; Rebar [123 t] | 940 | 100% | 100% | 940 | m3 | 940 | 823B_AB |
| 823B-ERS-A2-RT-1100 |  | Blinding, H-Pile Head, WP, Re-bar & Fwk -10.825mPD | 7d | 2013-09-24 A | 2013-10-02 A | 823B-ERS-A2-ELS-1140 SS+3d | 100% | 2013-04-19 | 2013-04-26 |  |  | 100% | 100% |  |  |  | 823B_AB |
| 823B-ERS-A2-RT-1090 |  | Running Tunnel (Bay 7 & 6) - Mass Concrete (invert & walkway) (945m³ conc) | 9d | 2013-10-02 A | 2013-11-21 A | 823B-ERS-A2-RT-1070 SS+3d, 823B-ERS-A2-RT-1030 | 100% | 2013-06-20 | 2013-06-29 | Concrete [945 Cu m] | 945 | 100% | 100% | 945 | m3 | 945 | 823B_AB |
| 823B-ERS-A2-RT-1130 |  | Running Tunnel (Bay 9) - Pile head | 6d | 2013-10-02 A | 2013-10-07 A | 823B-ERS-A2-RT-1110 | 100% | 2013-05-04 | 2013-05-10 |  |  | 100% | 100% |  |  |  | 823B_AB |
| 823B-ERS-A2-RT-1110 |  | Running Tunnel (Bay 10) - Pile head | 5d | 2013-10-03 A | 2013-10-08 A | 823B-ERS-A2-RT-1100, 823B-ERS-A2-ELS-1150 | 100% | 2013-04-27 | 2013-05-03 |  |  | 100% | 100% |  |  |  | 823B_AB |
| 823B-ERS-A2-RT-1140 |  | Running Tunnel (Bay 9) - Sump pit (333m³ conc) | 12d | 2013-10-08 A | 2013-10-15 A | 823B-ERS-A2-RT-1120, 823B-ERS-A2-RT-1130 | 100% | 2013-05-16 | 2013-05-30 | Concrete [333 Cu m]; Rebar [37 t] | 333 | 100% | 100% | 333 | m3 | 333 | 823B_AB |
| 823B-ERS-A2-RT-1120 |  | Running Tunnel (Bay 10) - Sump pit (333m³ conc) | 10d | 2013-10-09 A | 2013-10-19 A | 823B-ERS-A2-RT-1110 | 100% | 2013-05-04 | 2013-05-15 | Concrete [333 Cu m]; Rebar [37 t] | 333 | 100% | 100% | 333 | m3 | 333 | 823B_AB |
| 823B-ERS-A2-RT-1150 |  | Running Tunnel (Bay 8) - Pile head | 5d | 2013-11-01 A | 2013-11-06 A | 823B-ERS-A2-RT-1130 SS+4d | 100% | 2013-05-09 | 2013-05-14 |  |  | 100% | 100% |  |  |  | 823B_AB |
| 823B-ERS-A2-RT-1160 |  | Running Tunnel (Bay 9 & 8) - Blinding | 4d | 2013-11-02 A | 2013-11-06 A | 823B-ERS-A2-RT-1150, 823B-ERS-A2-RT-1140 | 100% | 2013-05-31 | 2013-06-04 |  |  | 100% | 100% |  |  |  | 823B_AB |
| 823B-ERS-A2-RT-1240 |  | Running Tunnel (Bay 8) - BS Conc (486m³ conc) | 5d | 2013-11-05 A | 2013-11-09 A | 823B-ERS-A2-RT-1190 | 100% | 2013-06-26 | 2013-07-02 | Concrete [486 Cu m] | 486 | 100% | 100% | 486 | m3 | 486 | 823B_AB |
| 823B-ERS-A2-RT-1170 |  | Running Tunnel (Bay 10, 9, 8) - WP+ BS Rebar | 5d | 2013-11-07 A | 2013-11-14 A | 823B-ERS-A2-RT-1120, 823B-ERS-A2-RT-1160 | 100% | 2013-06-05 | 2013-06-10 | Rebar [274 t] |  | 100% | 100% |  |  |  | 823B_AB |
| 823B-ERS-A2-RT-1040 |  | Running Tunnel (Bay 7) - Backfilling (3,536m³ backfill) | 19d | 2013-11-11 A | 2013-11-16 A | 823B-ERS-A2-RT-1060 SS+16d, 823B-ERS-A2-RT-1030 | 100% | 2013-06-11 | 2013-07-04 | Backfilling [3536 Cu m] | 3536 | 100% | 100% | 3536 | m3 | 3536 | 823B_AB |
| 823B-ERS-A2-RT-1080 |  | Running Tunnel (Bay 6) Backfilling (3,289m³ backfill) | 22d | 2013-11-11 A | 2013-11-16 A | 823B-ERS-A2-RT-1040, 823B-ERS-A2-RT-1070 | 100% | 2013-07-05 | 2013-07-30 | Backfilling [3289 Cu m] | 3289 | 100% | 100% | 3289 | m3 | 3289 | 823B_AB |
| 823B-ERS-A2-RT-1180 |  | Running Tunnel (Bay 10) - BS Conc (958m³ conc) | 6d | 2013-11-15 A | 2013-11-21 A | 823B-ERS-A2-RT-1170 | 100% | 2013-06-11 | 2013-06-18 | Concrete [958 Cu m] | 958 | 100% | 100% | 958 | m3 | 958 | 823B_AB |
| 823B-ERS-A2-RT-1250 |  | Running Tunnel (Bay 8) - Wall & Roof (517m³ conc) | 12d | 2013-11-18 A | 2013-12-06 A | 823B-ERS-A2-RT-1240 | 100% | 2013-07-03 | 2013-07-16 | Concrete [517 Cu m]; Rebar [68 t] | 517 | 100% | 100% | 517 | m3 | 517 | 823B_AB |
| 823B-ERS-A2-RT-1190 |  | Running Tunnel (Bay 9) - BS Conc (958m³ conc) | 6d | 2013-11-19 A | 2013-11-25 A | 823B-ERS-A2-RT-1180 | 100% | 2013-06-19 | 2013-06-25 | Concrete [958 Cu m] | 958 | 100% | 100% | 958 | m3 | 958 | 823B_AB |
| 823B-ERS-A2-RT-1200 |  | Running Tunnel (Bay 10 & 9) - Walls (8nos) (836m³ conc) | 5d | 2013-11-22 A | 2014-01-02 A | 823B-ERS-A2-RT-1180, 823B-ERS-A2-RT-1190 | 100% | 2013-06-26 | 2013-07-02 | Concrete [836 Cu m]; Rebar [92 t] | 836 | 100% | 100% | 836 | m3 | 836 | 823B_AB |
| 823B-ERS-A2-RT-1230 |  | Remove Strut S4 & S5 | 6d | 2013-12-02 A | 2013-12-07 A | 823B-ERS-A2-RT-1210, 823B-ERS-A2-RT-1220 | 100% | 2013-07-24 | 2013-07-30 |  |  | 100% | 100% |  |  |  | 823B_AB |
| 823B-ERS-A2-RT-1265 |  | Running Tunnel (Bay 8) - Mass Concrete (invert & walkway) (287m³ conc) | 6d | 2013-12-20 A | 2013-12-28 A | 823B-ERS-A2-RT-1260 SS+10d | 100% | 2013-07-29 | 2013-08-03 | Concrete [287 Cu m] | 287 | 100% | 100% | 287 | m3 | 287 | 823B_AB |
| 823B-ERS-A2-RT-1226 |  | Running Tunnel (Bay 10 & 9) - Mass Concrete (invert & walkway) | 16d | 2013-12-23 A | 2014-01-08 A | 823B-ERS-A2-RT-1210, 823B-ERS-A2-RT-1220 SS | 100% | 2013-07-17 | 2013-08-03 |  |  | 100% | 100% |  |  |  | 823B_AB |
| 823B-ERS-A2-RT-1210 |  | Running Tunnel (Bay 10) - L1 Roof Slab (383m³ conc) | 12d | 2014-01-03 A | 2014-02-19 A | 823B-ERS-A2-RT-1200 | 100% | 2013-07-03 | 2013-07-16 | Concrete [383 Cu m]; Rebar [42 t] | 383 | 100% | 100% | 383 | m3 | 383 | 823B_AB |
| 823B-ERS-A2-RT-1220 |  | Running Tunnel (Bay 9) - L1 Roof Slab (383m³ conc) | 18d | 2014-01-03 A | 2014-02-14 A | 823B-ERS-A2-RT-1200 | 100% | 2013-07-03 | 2013-07-23 | Concrete [383 Cu m]; Rebar [42 t] | 383 | 100% | 100% | 383 | m3 | 383 | 823B_AB |
| 823B-ERS-A2-RT-1260 |  | Running Tunnel (Bay 8) - Plenum (564m³ conc) | 12d | 2014-02-10 A | 2014-02-28 A | 823B-ERS-A2-RT-1250 | 100% | 2013-07-17 | 2013-07-30 | Concrete [564 Cu m]; Rebar [74 t] | 564 | 100% | 100% | 564 | m3 | 564 | 823B_AB |
| 823B-ERS-A2-RT-1270 |  | Running Tunnel (Bay 8) - Backfilling (1,974m³ backfill) | 23d | 2014-03-03 A | 2014-03-28 A | 823B-ERS-A2-RT-1250, 823B-ERS-A2-PBN-1040 | 100% | 2014-04-03 | 2014-05-05 | Backfilling [1974 Cu m] | 1974 | 100% | 100% | 1974 | m3 | 1974 | 823B_AB |
| 823B-ERS-A2-RT-1095 |  | Running Tunnel (Bay 7 & 6) - Cable bracket installation | 18d | 2014-04-01 A | 2014-04-25 A | 823B-ERS-A2-RT-1040 | 100% |  |  |  |  | 100% | 100% |  |  |  | 823B_AB |
| 823B-ERS-A2-RT-1225 |  | Running Tunnel (Bay 9 & 10) - Cable bracket installation | 10d | 2014-04-01 A | 2014-04-12 A | 823B-ERS-A2-RT-1210, 823B-ERS-A2-RT-1220 | 100% |  |  |  |  | 100% | 100% |  |  |  | 823B_AB |
| 823B-ERS-A2-RT-1267 |  | Running Tunnel (Bay 8) - Cable bracket installation | 6d | 2014-04-01 A | 2014-04-08 A | 823B-ERS-A2-RT-1260 SS+10d | 100% |  |  |  |  | 100% | 100% |  |  |  | 823B_AB |

| ID | WBS | Activity | Duration | Start | Finish | Predecessors | Complete | Planned start | Planned finish | Constraint | Resources | user_text4 | user_text6 | user_text7 | user_integer1 | user_text1 | user_text5 | 823B_As-built | Time Gain / Loss |
| --- | --- | --- | --- | --- | --- | --- | --- | --- | --- | --- | --- | --- | --- | --- | --- | --- | --- | --- | --- |
|  | 3 | **Plant Building North** |  | 2014-03-01 | 2014-11-14 |  |  |  |  |  |  |  |  |  |  |  |  |  |  |
| 823B-ERS-A2-PBN-1010 |  | SPN Superstructure - Column (16 nos) (374m³ conc) | 6d | 2014-03-01 A | 2014-04-15 A | 823B-ERS-A2-RT-1230 | 100% | 2014-03-01 | 2014-03-07 |  | Concrete [374 Cu m]; Rebar [42 t] | 374 | 100% | 100% | 374 | m3 | 374 | 823B_AB |  |
| 823B-ERS-A2-PBN-1020 |  | SPN Superstructure - Roof Slab @ +13.475mPD (over Bay 10) (639m³ conc) | 12d | 2014-04-16 A | 2014-05-17 A | 823B-ERS-A2-PBN-1010 | 100% | 2014-04-07 | 2014-04-23 |  | Concrete [639 Cu m]; Rebar [71 t] | 639 | 100% | 100% | 639 | m3 | 639 | 823B_AB | -17 |
| 823B-ERS-A2-PBN-1030 |  | SPN Superstructure - Roof Slab @ +13.475mPD (over Bay 9) (639m³ conc) | 16d | 2014-04-16 A | 2014-05-15 A | 823B-ERS-A2-PBN-1010 | 100% | 2014-04-07 | 2014-04-28 |  | Concrete [639 Cu m]; Rebar [71 t] | 639 | 100% | 100% | 639 | m3 | 639 | 823B_AB | -18 |
| 823B-ERS-A2-PBN-1040 |  | SPN Superstructure - Removal of Strut S2 & S3 | 6d | 2014-05-19 A | 2014-05-24 A | 823B-ERS-A2-PBN-1020, 823B-ERS-A2-PBN-1030 | 100% | 2014-05-22 | 2014-05-28 |  |  |  | 100% | 100% |  |  |  | 823B_AB | -18 |
| 823B-ERS-A2-PBN-1050 |  | SPN Superstructure - External Wall +20.8mPD (96m³ conc) | 14d | 2014-05-26 A | 2014-09-03 A | 823B-ERS-A2-PBN-1040 | 100% | 2014-05-29 | 2014-06-14 |  | Concrete [96 Cu m]; Rebar [11 t] | 96 | 100% | 100% | 96 | m3 | 96 | 823B_AB |  |
| 823B-ERS-A2-PBN-1060 |  | SPN Superstructure - Columns (22nos) (87m³ conc) | 8d | 2014-06-09 A | 2014-09-02 A | 823B-ERS-A2-PBN-1050 SS+11d | 100% | 2014-06-09 | 2014-06-17 |  | Concrete [87 Cu m]; Rebar [10 t] | 87 | 100% | 100% | 87 | m3 | 87 | 823B_AB |  |
| 823B-ERS-A2-PBN-1070 |  | SPN Superstructure - Roof Slab @ +20.8mPD (over Bay 10) (174m³ conc) | 14d | 2014-08-08 A | 2014-09-05 A | 823B-ERS-A2-PBN-1060 | 100% | 2014-08-08 | 2014-08-23 |  | Concrete [174 Cu m]; Rebar [20 t] | 174 | 100% | 100% | 174 | m3 | 174 | 823B_AB |  |
| 823B-ERS-A2-PBN-1080 |  | SPN Superstructure - Roof Slab @ +20.8mPD (over Bay 9) (174m³ conc) | 6d | 2014-08-08 A | 2014-09-05 A | 823B-ERS-A2-PBN-1070, 823B-ERS-A2-RT-1270 | 100% | 2014-08-25 | 2014-08-30 |  | Concrete [174 Cu m]; Rebar [20 t] | 174 | 100% | 100% | 174 | m3 | 174 | 823B_AB |  |
| 823B-ERS-A2-PBN-1090 |  | SPN Superstructure - External Wall +28.2mPD (38m³ conc) | 12d | 2014-09-29 A | 2014-10-31 A | 823B-ERS-A2-PBN-1080 | 100% | 2014-09-10 | 2014-09-23 |  | Concrete [38 Cu m]; Rebar [5 t] | 38 | 100% | 100% | 38 | m3 | 38 | 823B_AB |  |
| 823B-ERS-A2-PBN-1100 |  | SPN Superstructure - Beam & Roof (174m³ conc) | 6d | 2014-11-01 A | 2014-11-14 A | 823B-ERS-A2-PBN-1090 | 100% | 2014-12-01 | 2014-12-06 |  | Concrete [174 Cu m]; Rebar [20 t] | 174 | 100% | 100% | 174 | m3 | 174 | 823B_AB |  |
|  | 4 | **ABWF Works** |  | 2014-09-19 | 2015-09-02 |  |  |  |  |  |  |  |  |  |  |  |  |  |  |
| 823B-ERS-A2-PBN-2000 |  | SPN - ABWF (Degree 1 completion - blockwork, wet trade, water tight, civil&bldg provision for DC, etc.) | 26d | 2014-09-19 A | 2014-12-01 A | 823B-ERS-A2-PBN-1070, 823B-ERS-A2-PBN-1080 SS+4d, 823B-PRO-1000 | 100% | 2014-09-06 | 2014-10-09 |  |  |  | 100% | 100% |  |  |  | 823B_AB |  |
| 823B-ERS-A2-PBN-3000 |  | SPN - ABWF (Degree 2 completion - permanent door frame, Wall, floor, ceiling to DC rooms, etc) | 96d | 2014-12-02 A | 2015-02-26 A | 823B-ERS-A2-PBN-2000 | 100% | 2014-12-13 | 2015-04-15 |  |  |  | 100% | 100% |  |  |  | 823B_AB |  |
| 823B-ERS-A2-PBN-4000 |  | SPN - ABWF (Degree 3 completion - door ironmongery, signage, louvre, painting, etc.) | 48d | 2015-02-27 A | 2015-09-02 A | 823B-ERS-A2-PBN-3000 | 100% | 2015-02-27 | 2015-04-28 |  |  |  | 100% | 100% |  |  |  | 823B_AB |  |
|  | 2 | **Top Down (CH123+698 to CH123+780)** |  | 2012-11-02 | 2014-10-09 |  |  |  |  |  |  |  |  |  |  |  |  |  |  |
|  | 1 | **@ CH 123+698 to CH123+735)** |  | 2012-11-07 | 2014-10-09 |  |  |  |  |  |  |  |  |  |  |  |  |  |  |
|  | 2 | **ELS Works** |  | 2012-11-07 | 2013-09-14 |  |  |  |  |  |  |  |  |  |  |  |  |  |  |
| 823B-ERS-A2-ELS-2010 |  | Capping Beam Westside | 3d | 2012-11-07 A | 2012-11-09 A |  | 100% |  |  | start on or after 2012-11-07 |  |  | 100% | 100% |  |  |  | 823B_AB |  |
| 823B-ERS-A2-ELS-2020 |  | Capping Beam Eastside | 2d | 2012-12-01 A | 2012-12-03 A | 823B-ERS-A2-ELS-2010 | 100% |  |  |  |  |  | 100% | 100% |  |  |  | 823B_AB |  |
| 823B-ERS-A2-ELS-2030 |  | Bulk Excavation +12.1mPD (1,213m³) | 6d | 2013-01-21 A | 2013-01-26 A | 823B-ERS-A2-ELS-2020, 823B-ERS-A2-ELS-1040 | 100% |  |  |  | Bulk Excavation [1213 Cu m]; Excavation [1213 Cu m] | 1213 | 100% | 100% | 1213 | m3 | 1213 | 823B_AB |  |
| 823B-ERS-A2-ELS-2040 |  | Expose coupler | 8d | 2013-01-28 A | 2013-02-05 A | 823B-ERS-A2-ELS-2030 | 100% |  |  |  |  |  | 100% | 100% |  |  |  | 823B_AB |  |
| 823B-ERS-A2-ELS-2060 |  | Concrete Strut S1 (313m³ conc) | 8d | 2013-01-28 A | 2013-05-02 A | 823B-ERS-A2-ELS-2030, 823B-ERS-A2-ELS-2040 SS | 100% | 2013-01-28 | 2013-02-05 |  | Concrete [313 Cu m]; Rebar [10 t] | 313 | 100% | 100% | 313 | m3 | 313 | 823B_AB |  |
| 823B-ERS-A2-ELS-2050 |  | Runner Beam | 9d | 2013-01-31 A | 2013-02-09 A | 823B-ERS-A2-ELS-2040 SS+3d | 100% |  |  |  |  |  | 100% | 100% |  |  |  | 823B_AB |  |
| 823B-ERS-A2-ELS-2070 |  | Bulk Excavation +4.225mPD (2,022m³) | 10d | 2013-03-04 A | 2013-07-02 A | 823B-ERS-A2-ELS-2060, 823B-ERS-A2-ELS-2050 SS | 100% | 2013-02-06 | 2013-02-20 |  | Bulk Excavation [2022 Cu m]; Excavation [2022 Cu m] | 2022 | 100% | 100% | 2022 | m3 | 2022 | 823B_AB |  |
| 823B-ERS-A2-ELS-2080 |  | Concrete Strut S2 (457m³ conc) | 9d | 2013-03-09 A | 2013-07-20 A | 823B-ERS-A2-ELS-2070 | 100% | 2013-02-21 | 2013-03-02 |  | Rebar [14 t]; Concrete [457 Cu m] | 457 | 100% | 100% | 457 | m3 | 457 | 823B_AB |  |
| 823B-ERS-A2-ELS-2100 |  | Bulk Excavation -1.5mPD (2,426m³) | 12d | 2013-07-03 A | 2013-08-12 A | 823B-ERS-A2-ELS-2080 SS+3d | 100% | 2013-02-25 | 2013-03-09 |  | Bulk Excavation [2426 Cu m]; Excavation [2426 Cu m] | 2426 | 100% | 100% | 2426 | m3 | 2426 | 823B_AB |  |
| 823B-ERS-A2-ELS-2090 |  | Columns (between Conc Strut S1 & S2) (14m³ conc) | 10d | 2013-08-01 A | 2013-08-12 A | 823B-ERS-A2-ELS-2080 SS+5d | 100% | 2013-02-27 | 2013-03-09 |  | Concrete [14 Cu m]; Rebar [2 t] | 14 | 100% | 100% | 14 | m3 | 14 | 823B_AB |  |
| 823B-ERS-A2-ELS-2110 |  | S1 Strut | 12d | 2013-09-02 A | 2013-09-07 A | 823B-ERS-A2-ELS-2100, 823B-ERS-A2-ELS-2090 | 100% | 2013-03-11 | 2013-03-23 |  |  |  | 100% | 100% |  |  |  | 823B_AB |  |
| 823B-ERS-A2-ELS-2120 |  | Bulk Excavation -5.7mPD (1,618m³) | 8d | 2013-09-02 A | 2013-09-07 A | 823B-ERS-A2-ELS-2110 SS+7d | 100% | 2013-03-19 | 2013-03-27 |  | Bulk Excavation [1618 Cu m]; Excavation [1618 Cu m] | 1618 | 100% | 100% | 1618 | m3 | 1618 | 823B_AB |  |
| 823B-ERS-A2-ELS-2130 |  | Rock Excavation (1,213m³) | 6d | 2013-09-09 A | 2013-09-14 A | 823B-ERS-A2-ELS-2120 | 100% | 2013-03-28 | 2013-04-08 |  | Bulk Excavation [1213 Cu m]; Excavation [1213 Cu m] | 1213 | 100% | 100% | 1213 | m3 | 1213 | 823B_AB |  |

| ID | WBS | Activity | Duration | Start | Finish | Predecessors | Complete | Planned start | Planned finish | Resources | user_text6 | user_text7 | 823B_As-built | user_text4 | user_integer1 | user_text1 | user_text5 |
| --- | --- | --- | --- | --- | --- | --- | --- | --- | --- | --- | --- | --- | --- | --- | --- | --- | --- |
|  | 3 | **Tunnel Structure** |  | 2013-10-02 | 2014-10-09 |  |  |  |  |  |  |  |  |  |  |  |  |
| 823B-ERS-A2-RT-2010 |  | Running Tunnel (Bay 11) - Pile head | 6d | 2013-10-02 A | 2013-10-08 A | 823B-ERS-A2-ELS-2130 SS, 823B-ERS-A2-ELS-2120, 823B-ERS-CNP-0010 | 100% | 2013-03-28 | 2013-04-08 |  | 100% | 100% | 823B_AB |  |  |  |  |
| 823B-ERS-A2-RT-2050 |  | Running Tunnel (Bay 12) - Pile head | 6d | 2013-10-02 A | 2013-10-08 A | 823B-ERS-A2-ELS-2130 | 100% | 2013-04-09 | 2013-04-15 |  | 100% | 100% | 823B_AB |  |  |  |  |
| 823B-ERS-A2-RT-2020 |  | Running Tunnel (Bay 11) - WP+BS+Columns+Platform (515m³ conc) | 28d | 2013-10-09 A | 2013-12-19 A | 823B-ERS-A2-RT-2010 SS+6d | 100% | 2013-04-09 | 2013-05-11 | Concrete [515 Cu m]; Rebar [68 t] | 100% | 100% | 823B_AB | 515 | 515 | m3 | 515 |
| 823B-ERS-A2-RT-2060 |  | Running Tunnel (Bay 12) - WP+BS+Columns+Platform (750m³ conc) | 28d | 2013-10-09 A | 2013-12-14 A | 823B-ERS-A2-RT-2050 | 100% | 2013-04-16 | 2013-05-20 | Concrete [750 Cu m]; Rebar [99 t] | 100% | 100% | 823B_AB | 750 | 750 | m3 | 750 |
| 823B-ERS-A2-RT-2090 |  | Running Tunnel (Bay 11 & 12) - Mass Concrete (invert & walkway) (282m³ conc) | 6d | 2013-11-11 A | 2013-12-02 A | 823B-ERS-A2-RT-2030, 823B-ERS-A2-RT-2070, 823B-ERS-A2-RT-2040, 823B-ERS-A2-RT-2080 SS+27d | 100% | 2013-07-26 | 2013-08-01 | Concrete [282 Cu m] | 100% | 100% | 823B_AB | 282 | 282 | m3 | 282 |
| 823B-ERS-A2-RT-2070 |  | Running Tunnel (Bay 12) - Remove Strut S1, RB, KP | 6d | 2013-11-25 A | 2013-11-30 A | 823B-ERS-A2-RT-2060 | 100% | 2013-05-21 | 2013-05-27 |  | 100% | 100% | 823B_AB |  |  |  |  |
| 823B-ERS-A2-RT-2100 |  | Running Tunnel (Bay 11 & 12) - Steel frame installation | 36d | 2013-11-25 A | 2014-07-31 A | 823B-ERS-A2-RT-2030, 823B-ERS-A2-RT-2070 SS+250d, 823B-DP009-070 | 100% | 2014-03-21 | 2014-05-08 |  | 100% | 100% | 823B_AB |  |  |  |  |
| 823B-ERS-A2-RT-2080 |  | Running Tunnel (Bay 12) - Staircase (126m³ conc) | 28d | 2013-12-16 A | 2014-03-18 A | 823B-ERS-A2-RT-2070, 823B-ERS-A2-RT-2040 | 100% | 2013-06-24 | 2013-07-26 | Concrete [126 Cu m]; Rebar [17 t] | 100% | 100% | 823B_AB | 126 | 126 | m3 | 126 |
| 823B-ERS-A2-RT-2030 |  | Running Tunnel (Bay 11) - Remove Strut S1, RB, KP | 6d | 2013-12-20 A | 2013-12-28 A | 823B-ERS-A2-RT-2020 | 100% | 2013-05-13 | 2013-05-20 |  | 100% | 100% | 823B_AB |  |  |  |  |
| 823B-ERS-A2-RT-2085 |  | Running Tunnel (Bay 11 & 12) - Cable bracket installation | 18d | 2013-12-23 A | 2013-12-28 A | 823B-ERS-A2-RT-2040, 823B-ERS-A2-RT-2080 SS+17d | 100% | 2013-07-15 | 2013-08-03 |  | 100% | 100% | 823B_AB |  |  |  |  |
| 823B-ERS-A2-RT-2040 |  | Running Tunnel (Bay 11) - Staircase (110m³ conc) | 28d | 2013-12-30 A | 2014-03-07 A | 823B-ERS-A2-RT-2030 | 100% | 2013-05-21 | 2013-06-22 | Concrete [110 Cu m]; Rebar [15 t] | 100% | 100% | 823B_AB | 110 | 110 | m3 | 110 |
| 823B-ERS-A2-RT-2110 |  | Running Tunnel (Bay 11 & 12) - Noise absorption panels | 12d | 2014-01-02 A | 2014-10-09 A | 823B-ERS-A2-RT-2100 SS+132d | 100% | 2014-09-01 | 2014-09-15 |  | 100% | 100% | 823B_AB |  |  |  |  |
|  | 2 | **@ CH 123+735 to CH123+780)** |  | 2012-11-02 | 2014-06-30 |  |  |  |  |  |  |  |  |  |  |  |  |
|  | 1 | **ELS Works** |  | 2012-11-02 | 2013-09-14 |  |  |  |  |  |  |  |  |  |  |  |  |
| 823B-ERS-A2-ELS-3040 |  | Backfilling+Falsework | 8d | 2012-11-02 A | 2012-11-10 A | 823B-ERS-A2-ELS-3030, 823B-ERS-A3-ELS-1130 SS | 100% | 2013-02-06 | 2013-02-18 |  | 100% | 100% | 823B_AB |  |  |  |  |
| 823B-ERS-A2-ELS-3010 |  | Capping Beam Westside | 3d | 2012-11-10 A | 2012-11-13 A | 823B-ERS-A2-ELS-2010 | 100% |  |  |  | 100% | 100% | 823B_AB |  |  |  |  |
| 823B-ERS-A2-ELS-3050 |  | Bulk Excavation +12.5mPD (1,213m³) | 6d | 2012-11-12 A | 2012-11-17 A | 823B-ERS-A2-ELS-3040 | 100% | 2013-02-19 | 2013-02-25 | Bulk Excavation [1213 Cu m]; Excavation [1213 Cu m] | 100% | 100% | 823B_AB | 1213 | 1213 | m3 | 1213 |
| 823B-ERS-A2-ELS-3060 |  | Runner beam | 13d | 2012-11-12 A | 2012-11-26 A | 823B-ERS-A2-ELS-3050 SS | 100% | 2013-02-19 | 2013-03-05 |  | 100% | 100% | 823B_AB |  |  |  |  |
| 823B-ERS-A2-ELS-3080 |  | Bulk Excavation +4.225mPD (1,213m³) | 6d | 2012-11-12 A | 2013-08-10 A | 823B-ERS-A2-ELS-3070 | 100% | 2013-03-08 | 2013-03-14 | Bulk Excavation [1213 Cu m]; Excavation [1213 Cu m] | 100% | 100% | 823B_AB | 1213 | 1213 | m3 | 1213 |
| 823B-ERS-A2-ELS-3020 |  | Expose coupler | 12d | 2012-11-26 A | 2012-12-08 A |  | 100% |  |  |  | 100% | 100% | 823B_AB |  |  |  |  |
| 823B-ERS-A2-ELS-3030 |  | Capping Beam Eastside | 6d | 2012-12-04 A | 2012-12-10 A | 823B-ERS-A2-ELS-2020, 823B-ERS-A2-ELS-3020 SS | 100% |  |  |  | 100% | 100% | 823B_AB |  |  |  |  |
| 823B-ERS-A2-ELS-3130 |  | Bulk Excavation -1.5mPD (2,629m³) | 13d | 2012-12-24 A | 2013-08-30 A | 823B-ERS-A2-ELS-3120 | 100% | 2013-04-09 | 2013-04-23 | Bulk Excavation [2629 Cu m]; Excavation [2629 Cu m] | 100% | 100% | 823B_AB | 2629 | 2629 | m3 | 2629 |
| 823B-ERS-A2-ELS-3070 |  | Concrete Strut S1 (498m³ conc) | 9d | 2013-04-15 A | 2013-08-09 A | 823B-ERS-A2-ELS-3060 SS, 823B-ERS-A2-ELS-3040, 823B-ERS-A2-ELS-3050 | 100% | 2013-02-26 | 2013-03-07 | Concrete [498 Cu m]; Rebar [65 t] | 100% | 100% | 823B_AB | 498 | 498 | m3 | 498 |
| 823B-ERS-A2-ELS-3090 |  | Expose coupler | 3d | 2013-04-22 A | 2013-06-17 A | 823B-ERS-A2-ELS-3080 | 100% | 2013-03-15 | 2013-03-18 |  | 100% | 100% | 823B_AB |  |  |  |  |
| 823B-ERS-A2-ELS-3100 |  | Runner beam | 2d | 2013-04-25 A | 2013-06-18 A | 823B-ERS-A2-ELS-3090 | 100% | 2013-03-19 | 2013-03-20 |  | 100% | 100% | 823B_AB |  |  |  |  |
| 823B-ERS-A2-ELS-3110 |  | Concrete Strut S2 (727m³ conc) | 9d | 2013-06-19 A | 2013-08-16 A | 823B-ERS-A2-ELS-3100 | 100% | 2013-03-21 | 2013-04-03 | Concrete [727 Cu m]; Rebar [95 t] | 100% | 100% | 823B_AB | 727 | 727 | m3 | 272 |
| 823B-ERS-A2-ELS-3120 |  | Columns (between Conc Strut S1 & S2) (19m³ conc) | 6d | 2013-08-12 A | 2013-08-17 A | 823B-ERS-A2-ELS-3110 SS+6d | 100% | 2013-03-28 | 2013-04-08 | Rebar [3 t]; Concrete [19 Cu m] | 100% | 100% | 823B_AB | 19 | 19 | m3 | 19 |
| 823B-ERS-A2-ELS-3140 |  | S1 Strut | 12d | 2013-08-31 A | 2013-09-02 A | 823B-ERS-A2-ELS-3130 SS+3d | 100% | 2013-04-12 | 2013-04-25 |  | 100% | 100% | 823B_AB |  |  |  |  |
| 823B-ERS-A2-ELS-3150 |  | Bulk Excavation -5.7mPD (2,224m³) | 11d | 2013-09-03 A | 2013-09-14 A | 823B-ERS-A2-ELS-3140 | 100% | 2013-04-26 | 2013-05-09 | Bulk Excavation [2224 Cu m]; Excavation [2224 Cu m] | 100% | 100% | 823B_AB | 2224 | 2224 | m3 | 2224 |

| ID | WBS | Activity | Duration | Start | Finish | Predecessors | Complete | Planned start | Planned finish | Resources | user_text6 | user_text7 | 823B_As-built | user_text4 | user_integer1 | user_text1 | user_text5 |
| --- | --- | --- | --- | --- | --- | --- | --- | --- | --- | --- | --- | --- | --- | --- | --- | --- | --- |
|  | 2 | **Tunnel Structure** |  | 2013-06-03 | 2014-06-30 |  |  |  |  |  |  |  |  |  |  |  |  |
| 823B-ERS-A2-RT-3100 |  | Running Tunnel (Bay 15) - Steel frame installation | 18d | 2013-06-03 A | 2014-06-03 A | 823B-ERS-A2-RT-3080 SS+5d, 823B-DP009-070, 823B-ERS-A2-RT-3130 | 100% | 2014-06-21 | 2014-07-12 |  | 100% | 100% | 823B_AB |  |  |  |  |
| 823B-ERS-A2-RT-3040 |  | Running Tunnel (Bay 14) - Pile head | 5d | 2013-09-26 A | 2013-10-02 A | 823B-ERS-A2-ELS-3150, 823B-ERS-A2-RT-3010 | 100% | 2013-05-18 | 2013-05-23 |  | 100% | 100% | 823B_AB |  |  |  |  |
| 823B-ERS-A2-RT-3010 |  | Running Tunnel (Bay 13) - Pile head | 6d | 2013-10-02 A | 2013-10-08 A | 823B-ERS-A2-ELS-3010, 823B-ERS-A2-ELS-3150, 823B-ERS-CNP-0010 | 100% | 2013-05-10 | 2013-05-16 |  | 100% | 100% | 823B_AB |  |  |  |  |
| 823B-ERS-A2-RT-3070 |  | Running Tunnel (Bay 15) - Pile head | 6d | 2013-10-02 A | 2013-10-08 A | 823B-ERS-A2-ELS-3150 | 100% | 2013-05-10 | 2013-05-16 |  | 100% | 100% | 823B_AB |  |  |  |  |
| 823B-ERS-A2-RT-3050 |  | Running Tunnel (Bay 14) - WP+BS+Columns+Platform (750m³ conc) | 28d | 2013-10-03 A | 2013-11-19 A | 823B-ERS-A2-RT-3040 | 100% | 2013-05-24 | 2013-06-26 | Concrete [750 Cu m]; Rebar [99 t] | 100% | 100% | 823B_AB | 750 | 750 | m3 | 750 |
| 823B-ERS-A2-RT-3020 |  | Running Tunnel (Bay 13) - WP+BS+Columns+Platform (750m³ conc) | 28d | 2013-10-09 A | 2013-11-26 A | 823B-ERS-A2-RT-3010 | 100% | 2013-05-18 | 2013-06-20 | Concrete [750 Cu m]; Rebar [99 t] | 100% | 100% | 823B_AB | 750 | 750 | m3 | 750 |
| 823B-ERS-A2-RT-3080 |  | Running Tunnel (Bay 15) - WP+BS+Columns+Platform (750m³ conc) | 28d | 2013-10-09 A | 2013-11-14 A | 823B-ERS-A2-RT-3070 | 100% | 2013-05-18 | 2013-06-20 | Concrete [750 Cu m]; Rebar [99 t] | 100% | 100% | 823B_AB | 750 | 750 | m3 | 750 |
| 823B-ERS-A2-RT-3130 |  | Running Tunnel (Bay 13 to 14) - Steel frame installation | 36d | 2013-10-21 A | 2014-06-07 A | 823B-ERS-A2-RT-3030, 823B-ERS-A2-RT-3060 SS, 823B-ERS-A2-RT-3090, 823B-DP009-070, 823B-ERS-A2-RT-2100 | 100% | 2014-05-09 | 2014-06-20 |  | 100% | 100% | 823B_AB |  |  |  |  |
| 823B-ERS-A2-RT-3120 |  | Running Tunnel (Bay 13 to 15) - Mass Concrete (invert & walkway) (559m³ conc) | 8d | 2013-11-01 A | 2013-12-14 A | 823B-ERS-A2-RT-3030, 823B-ERS-A2-RT-3060, 823B-ERS-A2-RT-3090, 823B-ERS-A2-RT-2090 SS | 100% | 2013-07-26 | 2013-08-03 | Concrete [559 Cu m] | 100% | 100% | 823B_AB | 559 | 559 | m3 | 559 |
| 823B-ERS-A2-RT-3060 |  | Running Tunnel (Bay 14) - Remove Strut S1, RB, KP | 6d | 2013-11-12 A | 2013-11-18 A | 823B-ERS-A2-RT-3050 | 100% | 2013-06-27 | 2013-07-04 |  | 100% | 100% | 823B_AB |  |  |  |  |
| 823B-ERS-A2-RT-3030 |  | Running Tunnel (Bay 13) - Remove Strut S1, RB, KP | 6d | 2013-11-21 A | 2013-11-27 A | 823B-ERS-A2-RT-3020 | 100% | 2013-06-21 | 2013-06-27 |  | 100% | 100% | 823B_AB |  |  |  |  |
| 823B-ERS-A2-RT-3090 |  | Running Tunnel (Bay 15) - Remove Strut S1, RB, KP | 6d | 2013-11-21 A | 2013-11-27 A | 823B-ERS-A2-RT-3080 | 100% | 2013-06-21 | 2013-06-27 |  | 100% | 100% | 823B_AB |  |  |  |  |
| 823B-ERS-A2-RT-3115 |  | Running Tunnel (Bay 13 to 15) - Cable bracket installation | 29d | 2013-12-19 A | 2013-12-28 A | 823B-ERS-A2-RT-3030, 823B-ERS-A2-RT-3060 SS+3d, 823B-ERS-A2-RT-3090 | 100% | 2013-07-02 | 2013-08-03 |  | 100% | 100% | 823B_AB |  |  |  |  |
| 823B-ERS-A2-RT-3110 |  | Running Tunnel (Bay 15) - Noise absorption panels | 6d | 2014-01-02 A | 2014-06-30 A | 823B-ERS-A2-RT-3100, 823B-ERS-A2-RT-3140 | 100% | 2014-09-30 | 2014-10-08 |  | 100% | 100% | 823B_AB |  |  |  |  |
| 823B-ERS-A2-RT-3140 |  | Running Tunnel (Bay 13 to 14) - Noise absorption panels | 12d | 2014-01-02 A | 2014-06-14 A | 823B-ERS-A2-RT-3130, 823B-ERS-A2-RT-2110 | 100% | 2014-09-16 | 2014-09-29 |  | 100% | 100% | 823B_AB |  |  |  |  |
|  | 3 | **AREA 3 - CH123+780 to CH123+909** |  | 2011-02-22 | 2014-08-12 |  |  |  |  |  |  |  |  |  |  |  |  |
|  | 1 | **D-Wall Construction** |  | 2011-02-22 | 2012-08-30 |  |  |  |  |  |  |  |  |  |  |  |  |
| 823B-ERS-A3-DW-1010 |  | D-wall construction completed (incl pumping test, Socket H-Pile) (11,904m³ conc) | 452d | 2011-02-22 A | 2012-08-30 A | 823B-AC-0095, 823B-AC-0100, 823B-AC-0105, 823B-AC-0110, 823B-AC-0115, 823B-A-PWS-0240, 823B-A-PWS-0140, 823B-A-PWS-0150, 823B-A-PWS-0160, 823B-A-PWS-0170, 823B-A-TWS-0110, 823B-A-PWS-0430 | 100% |  |  | Concrete [11904 Cu m] | 100% | 100% | 823B_AB | 11904 | 11904 | m3 | 11904 |
|  | 2 | **ELS Works** |  | 2012-08-31 | 2013-09-05 |  |  |  |  |  |  |  |  |  |  |  |  |
| 823B-ERS-A3-ELS-1010 |  | Bulk Excavation Stage 1 (+12.1mPD) (30,903m³) | 36d | 2012-08-31 A | 2012-10-13 A | 823B-ERS-A3-DW-1010, 823B-DP002-070 | 100% |  |  | Bulk Excavation [30903 Cu m]; Excavation [30903 Cu m] | 100% | 100% | 823B_AB | 30903 | 30903 | m3 | 30903 |
| 823B-ERS-A3-ELS-1020 |  | Concrete Strut S1 (830m³ conc) | 19d | 2012-09-18 A | 2012-10-11 A | 823B-ERS-A3-ELS-1010 | 100% |  |  | Rebar [108 t]; Concrete [830 Cu m] | 100% | 100% | 823B_AB | 830 | 830 | m3 | 830 |
| 823B-ERS-A3-ELS-1030 |  | Bulk Excavation Stage 2 (+4.225mPD) (18,027m³) | 21d | 2012-10-29 A | 2012-11-21 A | 823B-ERS-A3-ELS-1020 | 100% |  |  | Bulk Excavation [18027 Cu m]; Excavation [18027 Cu m] | 100% | 100% | 823B_AB | 18027 | 18027 | m3 | 18027 |
| 823B-ERS-A3-ELS-1040 |  | Capping Beam Westside | 9d | 2012-11-14 A | 2012-11-23 A | 823B-ERS-A2-ELS-3010 | 100% |  |  |  | 100% | 100% | 823B_AB |  |  |  |  |
| 823B-ERS-A3-ELS-1050 |  | Expose coupler | 13d | 2012-11-20 A | 2012-12-04 A | 823B-ERS-A3-ELS-1040 SS+5d | 100% |  |  |  | 100% | 100% | 823B_AB |  |  |  |  |
| 823B-ERS-A3-ELS-1060 |  | Runner beam | 12d | 2012-11-26 A | 2012-12-08 A | 823B-ERS-A3-ELS-1050 SS+5d | 100% |  |  |  | 100% | 100% | 823B_AB |  |  |  |  |
| 823B-ERS-A3-ELS-1070 |  | Pumping test - Stage 2 | 13d | 2012-12-03 A | 2012-12-17 A | 823B-ERS-A3-ELS-1030 FS+9d | 100% |  |  |  | 100% | 100% | 823B_AB |  |  |  |  |
| 823B-ERS-A3-ELS-1080 |  | Capping Beam Eastside | 12d | 2012-12-11 A | 2012-12-24 A | 823B-ERS-A2-ELS-3030 | 100% |  |  |  | 100% | 100% | 823B_AB |  |  |  |  |
| 823B-ERS-A3-ELS-1090 |  | Concrete Strut S2 (1,211m³ conc) | 8d | 2012-12-18 A | 2013-01-18 A | 823B-ERS-A3-ELS-1070, 823B-ERS-A3-ELS-1030 | 100% | 2012-12-18 | 2012-12-28 | Concrete [1211 Cu m]; Rebar [157 t] | 100% | 100% | 823B_AB | 1211 | 1211 | m3 | 1211 |
| 823B-ERS-A3-ELS-1100 |  | Columns (between Conc Strut S1 & S2) (61m³ conc) | 6d | 2013-01-03 A | 2013-01-26 A | 823B-ERS-A3-ELS-1090 SS+6d | 100% | 2012-12-27 | 2013-01-03 | Concrete [61 Cu m]; Rebar [8 t] | 100% | 100% | 823B_AB | 61 | 61 | m3 | 61 |
| 823B-ERS-A3-ELS-1110 |  | Bulk Excavation Stage 3 (-1.5mPD) (16,447m³) | 16d | 2013-01-21 A | 2013-08-01 A | 823B-ERS-A3-ELS-1100 SS+6d | 100% | 2013-01-04 | 2013-01-22 | Bulk Excavation [16447 Cu m]; Excavation [16447 Cu m] | 100% | 100% | 823B_AB | 16447 | 16447 | m3 | 16447 |
| 823B-ERS-A3-ELS-1120 |  | Bulk Excavation Stage 4 (-5.7mPD) (10,118m³) | 12d | 2013-01-28 A | 2013-09-05 A | 823B-ERS-A3-ELS-1110 | 100% | 2013-01-23 | 2013-02-05 | Bulk Excavation [10118 Cu m]; Excavation [10118 Cu m] | 100% | 100% | 823B_AB | 10118 | 10118 | m3 | 10118 |
| 823B-ERS-A3-ELS-1140 |  | S1 Strut | 12d | 2013-01-30 A | 2013-08-03 A | 823B-ERS-A3-ELS-1120 SS+6d | 100% | 2013-01-30 | 2013-02-15 |  | 100% | 100% | 823B_AB |  |  |  |  |
| 823B-ERS-A3-ELS-1130 |  | Rock Excavation (5,175m³) | 6d | 2013-02-06 A | 2013-05-04 A | 823B-ERS-A3-ELS-1120 | 100% | 2013-02-06 | 2013-02-15 | Bulk Excavation [5175 Cu m]; Excavation [5175 Cu m] | 100% | 100% | 823B_AB | 5175 | 5175 | m3 | 5175 |
| 823B-ERS-A3-ELS-1150 |  | Concrete Strut S2 | 6d | 2013-06-01 A | 2013-06-07 A | 823B-ERS-A3-ELS-1110 SS+8d | 100% | 2013-01-14 | 2013-01-19 |  | 100% | 100% | 823B_AB |  |  |  |  |
| 823B-ERS-A3-ELS-1160 |  | Columns (between Conc Strut S1 & S2) | 6d | 2013-06-08 A | 2013-08-01 A | 823B-ERS-A3-ELS-1150 | 100% | 2013-01-21 | 2013-01-26 |  | 100% | 100% | 823B_AB |  |  |  |  |

| ID | WBS | Activity | Duration | Start | Finish | Predecessors | Complete | Planned start | Planned finish | Resources | user_text6 | user_text7 | 823B_As-built | user_text4 | user_integer1 | user_text1 | user_text5 |
| --- | --- | --- | --- | --- | --- | --- | --- | --- | --- | --- | --- | --- | --- | --- | --- | --- | --- |
|  | 3 | **Tunnel Structure** |  | 2013-04-26 | 2014-08-12 |  |  |  |  |  |  |  |  |  |  |  |  |
| 823B-ERS-A3-RT-1180 |  | Running Tunnel (Bay 20) - Pile head | 6d | 2013-04-26 A | 2013-05-03 A | 823B-ERS-A3-ELS-1130, 823B-ERS-A3-ELS-1140 | 100% | 2013-02-16 | 2013-02-22 |  | 100% | 100% | 823B_AB |  |  |  |  |
| 823B-ERS-A3-RT-1140 |  | Running Tunnel (Bay 19) - Pile head | 6d | 2013-04-30 A | 2013-05-07 A | 823B-ERS-A3-ELS-1130, 823B-ERS-A3-ELS-1140 | 100% | 2013-02-16 | 2013-02-22 |  | 100% | 100% | 823B_AB |  |  |  |  |
| 823B-ERS-A3-RT-1190 |  | Running Tunnel (Bay 20) - WP+BS+Columns+Platform (750m³ conc) | 28d | 2013-05-04 A | 2013-06-01 A | 823B-ERS-A3-RT-1180 | 100% | 2013-02-23 | 2013-03-27 | Concrete [750 Cu m]; Rebar [99 t] | 100% | 100% | 823B_AB | 750 | 750 | m3 | 750 |
| 823B-ERS-A3-RT-1090 |  | Running Tunnel (Bay 18) - Pile head | 6d | 2013-05-07 A | 2013-05-13 A | 823B-ERS-A3-ELS-1130, 823B-ERS-A3-ELS-1140, 823B-ERS-CNP-0010 | 100% | 2013-02-16 | 2013-02-22 |  | 100% | 100% | 823B_AB |  |  |  |  |
| 823B-ERS-A3-RT-1150 |  | Running Tunnel (Bay 19) - WP+BS+Columns+Platform (750m³ conc) | 28d | 2013-05-08 A | 2013-06-01 A | 823B-ERS-A3-RT-1140 | 100% | 2013-02-23 | 2013-03-27 | Concrete [750 Cu m]; Rebar [99 t] | 100% | 100% | 823B_AB | 750 | 750 | m3 | 750 |
| 823B-ERS-A3-RT-1060 |  | Running Tunnel (Bay 17) - Pile head | 6d | 2013-05-13 A | 2013-05-18 A | 823B-ERS-A3-ELS-1130, 823B-ERS-A3-ELS-1140 | 100% | 2013-02-16 | 2013-02-22 |  | 100% | 100% | 823B_AB |  |  |  |  |
| 823B-ERS-A3-RT-1100 |  | Running Tunnel (Bay 18) - WP+BS+Columns+Platform (750m³ conc) | 28d | 2013-05-14 A | 2013-06-01 A | 823B-ERS-A3-RT-1090 | 100% | 2013-02-23 | 2013-03-27 | Concrete [750 Cu m]; Rebar [99 t] | 100% | 100% | 823B_AB | 750 | 750 | m3 | 750 |
| 823B-ERS-A3-RT-1070 |  | Running Tunnel (Bay 17) - WP+BS+Columns+Platform (750m³ conc) | 28d | 2013-05-20 A | 2013-06-03 A | 823B-ERS-A3-RT-1060 | 100% | 2013-02-23 | 2013-03-27 | Concrete [750 Cu m]; Rebar [99 t] | 100% | 100% | 823B_AB | 750 | 750 | m3 | 750 |
| 823B-ERS-A3-RT-1110 |  | Running Tunnel (Bay 18) - Remove Strut S1, RB, KP | 6d | 2013-05-28 A | 2013-06-03 A | 823B-ERS-A3-RT-1100 SS+23d | 100% | 2013-03-22 | 2013-03-28 |  | 100% | 100% | 823B_AB |  |  |  |  |
| 823B-ERS-A3-RT-1160 |  | Running Tunnel (Bay 19) - Remove Strut S1, RB, KP | 6d | 2013-05-28 A | 2013-06-03 A | 823B-ERS-A3-RT-1150 SS+22d | 100% | 2013-03-21 | 2013-03-27 |  | 100% | 100% | 823B_AB |  |  |  |  |
| 823B-ERS-A3-RT-1200 |  | Running Tunnel (Bay 20) - Remove Strut S1, RB, KP | 6d | 2013-05-28 A | 2013-06-03 A | 823B-ERS-A3-RT-1190 SS+23d | 100% | 2013-03-22 | 2013-03-28 |  | 100% | 100% | 823B_AB |  |  |  |  |
| 823B-ERS-A3-RT-1080 |  | Running Tunnel (Bay 17) - Remove Strut S1, RB, KP | 6d | 2013-05-29 A | 2013-06-04 A | 823B-ERS-A3-RT-1070 SS+23d | 100% | 2013-03-22 | 2013-03-28 |  | 100% | 100% | 823B_AB |  |  |  |  |
| 823B-ERS-A3-RT-1120 |  | Running Tunnel (Bay 18 to 16) - Steel frame installation | 54d | 2013-06-03 A | 2014-06-03 A | 823B-ERS-A3-RT-1100 SS, 823B-DP009-070, 823B-ERS-A2-RT-3100 | 100% | 2014-07-14 | 2014-09-15 |  | 100% | 100% | 823B_AB |  |  |  |  |
| 823B-ERS-A3-RT-1220 |  | Running Tunnel (Bay 20 to 19) - Steel frame installation | 36d | 2013-06-03 A | 2014-03-29 A | 823B-DP009-070, 823B-ERS-A3-RT-1120 | 100% | 2014-09-16 | 2014-10-29 |  | 100% | 100% | 823B_AB |  |  |  |  |
| 823B-ERS-A3-RT-1170 |  | Running Tunnel (Bay 19) - Staircase (126m³ conc) | 28d | 2013-06-05 A | 2013-08-10 A | 823B-ERS-A3-RT-1150 SS | 100% | 2013-02-23 | 2013-03-27 | Concrete [126 Cu m] | 100% | 100% | 823B_AB | 126 | 126 | m3 | 126 |
| 823B-ERS-A3-RT-1130 |  | Running Tunnel (Bay 18 to 16) - Noise absorption panels | 18d | 2013-06-17 A | 2014-08-11 A | 823B-ERS-A3-RT-1120, 823B-ERS-A2-RT-3110 | 100% | 2014-10-09 | 2014-10-29 |  | 100% | 100% | 823B_AB |  |  |  |  |
| 823B-ERS-A3-RT-1210 |  | Running Tunnel (Bay 20 to 16) - Mass Concrete (invert & walkway) (936m³ conc) | 8d | 2013-06-28 A | 2013-07-02 A | 823B-ERS-A3-RT-1150 SS+20d, 823B-ERS-A3-RT-1100 SS+20d, 823B-ERS-A3-RT-1070 SS+20d, 823B-ERS-A3-RT-1190 SS+20d, 823B-ERS-A3-RT-1020 SS+20d | 100% | 2013-03-19 | 2013-03-27 | Concrete [936 Cu m] | 100% | 100% | 823B_AB | 936 | 936 | m3 | 936 |
| 823B-ERS-A3-RT-1010 |  | Running Tunnel (Bay 16) - Pile head | 6d | 2013-08-26 A | 2013-08-31 A | 823B-ERS-A3-ELS-1160, 823B-ERS-A3-ELS-1130, 823B-ERS-A3-ELS-1140 | 100% | 2013-02-16 | 2013-02-22 |  | 100% | 100% | 823B_AB |  |  |  |  |
| 823B-ERS-A3-RT-1020 |  | Running Tunnel (Bay 16) - WP+BS+Columns+Platform (750m³ conc) | 28d | 2013-09-02 A | 2013-11-11 A | 823B-ERS-A3-RT-1010 | 100% | 2013-02-23 | 2013-03-27 | Concrete [750 Cu m]; Rebar [99 t] | 100% | 100% | 823B_AB | 750 | 750 | m3 | 750 |
| 823B-ERS-A3-RT-1240 |  | Running Tunnel (Bay 16 to 20) - Cable bracket installation | 19d | 2013-09-07 A | 2013-09-25 A | 823B-ERS-A3-RT-1020 SS+10d, 823B-ERS-A3-RT-1070 SS+10d, 823B-ERS-A3-RT-1100 SS+10d, 823B-ERS-A3-RT-1150 SS+10d, 823B-ERS-A3-RT-1190 SS+10d | 100% | 2013-03-07 | 2013-03-28 |  | 100% | 100% | 823B_AB |  |  |  |  |
| 823B-ERS-A3-RT-1030 |  | Running Tunnel (Bay 16) - Remove Strut S1, RB, KP | 6d | 2013-11-01 A | 2013-11-07 A | 823B-ERS-A3-RT-1020 SS+23d | 100% | 2013-03-22 | 2013-03-28 |  | 100% | 100% | 823B_AB |  |  |  |  |
| 823B-ERS-A3-RT-1050 |  | Running Tunnel (Bay 16) - Staircase (126m³ conc) | 28d | 2013-11-01 A | 2014-03-04 A | 823B-ERS-A3-RT-1020 SS | 100% | 2013-02-23 | 2013-03-27 | Concrete [126 Cu m] | 100% | 100% | 823B_AB | 126 | 126 | m3 | 126 |
| 823B-ERS-A3-RT-1230 |  | Running Tunnel (Bay 20 to 19) - Noise absorption panels | 12d | 2014-06-17 A | 2014-08-12 A | 823B-ERS-A3-RT-1220, 823B-ERS-A3-RT-1130 | 100% | 2014-10-30 | 2014-11-12 |  | 100% | 100% | 823B_AB |  |  |  |  |

| ID | WBS | Activity | Duration | Start | Finish | Predecessors | Complete | Planned start | Planned finish | Resources | user_text4 | user_text6 | user_text7 | user_integer1 | user_text1 | user_text5 | 823B_As-built |
| --- | --- | --- | --- | --- | --- | --- | --- | --- | --- | --- | --- | --- | --- | --- | --- | --- | --- |
|  | 4 | **AREA 4 - CH123+909 to CH124+010** |  | 2011-02-07 | 2014-06-03 |  |  |  |  |  |  |  |  |  |  |  |  |
|  | 1 | **D-Wall Construction** |  | 2011-02-07 | 2012-08-04 |  |  |  |  |  |  |  |  |  |  |  |  |
| 823B-ERS-A4-DW-1010 |  | D-Wall construction completed (incl. pumping test, socket H-Pile) (5,890m³ conc) | 443d | 2011-02-07 A | 2012-08-04 A | 823B-AC-0100, 823B-AC-0105, 823B-AC-0110, 823B-AC-0115, 823B-AC-0095, 823B-A-PWS-0240, 823B-A-PWS-0140, 823B-A-PWS-0150, 823B-A-PWS-0160, 823B-A-PWS-0170, 823B-A-TWS-0110, 823B-A-PWS-0430 | 100% |  |  | Concrete [5890 Cu m] | 5890 | 100% | 100% | 5890 | m3 | 5890 | 823B_AB |
|  | 2 | **ELS Works** |  | 2012-08-06 | 2013-04-23 |  |  |  |  |  |  |  |  |  |  |  |  |
| 823B-ERS-A4-ELS-1010 |  | Bulk Excavation Stage 1 (+12.1mPD) (23,180m³) | 70d | 2012-08-06 A | 2012-10-29 A | 823B-ERS-A4-DW-1010, 823B-DP002-070 | 100% |  |  | Bulk Excavation [23180 Cu m]; Excavation [23180 Cu m] | 23180 | 100% | 100% | 23180 | m3 | 23180 | 823B_AB |
| 823B-ERS-A4-ELS-1020 |  | Concrete Strut S1 (747m³ conc) | 19d | 2012-10-06 A | 2012-10-29 A | 823B-ERS-A4-ELS-1010 SS+51d | 100% |  |  | Concrete [747 Cu m]; Rebar [98 t] | 747 | 100% | 100% | 747 | m3 | 747 | 823B_AB |
| 823B-ERS-A4-ELS-1030 |  | Bulk Excavation Stage 2 (+4.225mPD) (6,967m³) | 21d | 2012-11-22 A | 2012-12-12 A | 823B-ERS-A3-ELS-1030 | 100% | 2012-11-22 | 2012-12-15 | Bulk Excavation [6967 Cu m]; Excavation [6967 Cu m] | 6967 | 100% | 100% | 6967 | m3 | 6967 | 823B_AB |
| 823B-ERS-A4-ELS-1040 |  | Capping Beam Westside | 7d | 2012-11-24 A | 2012-12-01 A | 823B-ERS-A3-ELS-1040 | 100% |  |  |  |  | 100% | 100% |  |  |  | 823B_AB |
| 823B-ERS-A4-ELS-1050 |  | Expose coupler | 12d | 2012-12-05 A | 2012-12-18 A | 823B-ERS-A3-ELS-1050 | 100% |  |  |  |  | 100% | 100% |  |  |  | 823B_AB |
| 823B-ERS-A4-ELS-1060 |  | Runner beam | 12d | 2012-12-10 A | 2012-12-22 A | 823B-ERS-A3-ELS-1060 | 100% |  |  |  |  | 100% | 100% |  |  |  | 823B_AB |
| 823B-ERS-A4-ELS-1070 |  | Pumping test - Stage 2 | 17d | 2012-12-17 A | 2013-01-08 A | 823B-ERS-A4-ELS-1030 | 100% |  |  |  |  | 100% | 100% |  |  |  | 823B_AB |
| 823B-ERS-A4-ELS-1080 |  | Capping Beam Eastside | 10d | 2012-12-27 A | 2013-01-08 A | 823B-ERS-A3-ELS-1080 | 100% |  |  |  |  | 100% | 100% |  |  |  | 823B_AB |
| 823B-ERS-A4-ELS-1090 |  | Concrete Strut S2 (1,090m³ conc) | 10d | 2013-01-07 A | 2013-01-25 A | 823B-ERS-A4-ELS-1030, 823B-ERS-A4-ELS-1050 | 100% | 2012-12-19 | 2013-01-02 | Concrete [1090 Cu m]; Rebar [142 t] | 1090 | 100% | 100% | 1090 | m3 | 1090 | 823B_AB |
| 823B-ERS-A4-ELS-1100 |  | Columns (between Conc Strut S1 & S2) (43m³ conc) | 8d | 2013-01-21 A | 2013-01-29 A | 823B-ERS-A4-ELS-1090 SS+6d | 100% | 2012-12-28 | 2013-01-07 | Concrete [43 Cu m]; Rebar [6 t] | 43 | 100% | 100% | 43 | m3 | 43 | 823B_AB |
| 823B-ERS-A4-ELS-1110 |  | Bulk excavation Stage 3 (-1.5mPD) (7,753m³) | 8d | 2013-02-04 A | 2013-02-16 A | 823B-ERS-A4-ELS-1100, 823B-ERS-A3-ELS-1110, 823B-ERS-A4-ELS-1070 | 100% | 2013-01-23 | 2013-01-31 | Bulk Excavation [7753 Cu m]; Excavation [7753 Cu m] | 7753 | 100% | 100% | 7753 | m3 | 7753 | 823B_AB |
| 823B-ERS-A4-ELS-1120 |  | Bulk excavation Stage 4 (-5.7mPD) (5,052m³) | 3d | 2013-02-16 A | 2013-02-19 A | 823B-ERS-A4-ELS-1110 | 100% | 2013-02-01 | 2013-02-04 | Bulk Excavation [5052 Cu m]; Excavation [5052 Cu m] | 5052 | 100% | 100% | 5052 | m3 | 5052 | 823B_AB |
| 823B-ERS-A4-ELS-1130 |  | S1 Strut | 6d | 2013-02-21 A | 2013-02-27 A | 823B-ERS-A4-ELS-1120 SS+3d | 100% | 2013-02-05 | 2013-02-14 |  |  | 100% | 100% |  |  |  | 823B_AB |
| 823B-ERS-A4-ELS-1140 |  | Bulk excavation Stage 3 (-1.5mPD) (3,450m³) | 10d | 2013-02-23 A | 2013-03-06 A | 823B-ERS-A5-ELS-1130 SS+2d | 100% | 2013-01-16 | 2013-01-26 | Bulk Excavation [3450 Cu m]; Excavation [3450 Cu m] | 3450 | 100% | 100% | 3450 | m3 | 3450 | 823B_AB |
| 823B-ERS-A4-ELS-1150 |  | Rock excavation (3,032m³) | 6d | 2013-03-04 A | 2013-03-09 A | 823B-ERS-A4-ELS-1140 | 100% | 2013-01-28 | 2013-02-02 | Bulk Excavation [3032 Cu m]; Excavation [3032 Cu m] | 3032 | 100% | 100% | 3032 | m3 | 3032 | 823B_AB |
| 823B-ERS-A4-ELS-1160 |  | S1 Strut | 3d | 2013-03-11 A | 2013-03-13 A | 823B-ERS-A4-ELS-1150 | 100% | 2013-02-04 | 2013-02-06 |  |  | 100% | 100% |  |  |  | 823B_AB |
| 823B-ERS-A4-ELS-1170 |  | Bulk excavation Stage 4 (-5.2mPD) (2,330m³) | 6d | 2013-03-14 A | 2013-03-20 A | 823B-ERS-A4-ELS-1160 | 100% | 2013-02-07 | 2013-02-16 | Bulk Excavation [2330 Cu m]; Excavation [2330 Cu m] | 2330 | 100% | 100% | 2330 | m3 | 2330 | 823B_AB |
| 823B-ERS-A4-ELS-1180 |  | Bulk excavation Stage 3 (-1.5mPD) (3,450m³) | 10d | 2013-03-29 A | 2013-04-09 A | 823B-ERS-A4-ELS-1140 SS+5d | 100% | 2013-01-22 | 2013-02-01 | Bulk Excavation [3450 Cu m]; Excavation [3450 Cu m] | 3450 | 100% | 100% | 3450 | m3 | 3450 | 823B_AB |
| 823B-ERS-A4-ELS-1190 |  | S1 Strut | 5d | 2013-04-10 A | 2013-04-16 A | 823B-ERS-A4-ELS-1180 | 100% | 2013-02-02 | 2013-02-07 |  |  | 100% | 100% |  |  |  | 823B_AB |
| 823B-ERS-A4-ELS-1200 |  | Bulk excavation Stage 4 (-5.2mPD) (2,330m³) | 6d | 2013-04-17 A | 2013-04-23 A | 823B-ERS-A4-ELS-1190 | 100% | 2013-02-08 | 2013-02-18 | Bulk Excavation [2330 Cu m]; Excavation [2330 Cu m] | 2330 | 100% | 100% | 2330 | m3 | 2330 | 823B_AB |

| ID | WBS | Activity | Duration | Start | Finish | Predecessors | Complete | Planned start | Planned finish | Resources | user_text6 | user_text7 | 823B_As-built | user_text4 | user_integer1 | user_text1 | user_text5 |
| --- | --- | --- | --- | --- | --- | --- | --- | --- | --- | --- | --- | --- | --- | --- | --- | --- | --- |
|  | 3 | **Tunnel Structure** |  | 2013-04-12 | 2014-06-03 |  |  |  |  |  |  |  |  |  |  |  |  |
| 823B-ERS-A4-RT-1100 |  | Running Tunnel (Bay 24) - Pile head | 4d | 2013-04-12 A | 2013-04-16 A | 823B-ERS-A4-ELS-1200, 823B-ERS-A4-ELS-1170 | 100% | 2013-02-19 | 2013-02-22 |  | 100% | 100% | 823B_AB |  |  |  |  |
| 823B-ERS-A4-RT-1140 |  | Running Tunnel (Bay 23) - Pile head | 4d | 2013-04-15 A | 2013-04-18 A | 823B-ERS-A4-ELS-1200, 823B-ERS-A4-ELS-1170, 823B-ERS-A4-RT-1100 SS | 100% | 2013-02-19 | 2013-02-22 |  | 100% | 100% | 823B_AB |  |  |  |  |
| 823B-ERS-A4-RT-1010 |  | Running Tunnel (Bay 22) - Pile head | 6d | 2013-04-17 A | 2013-04-23 A | 823B-ERS-A4-ELS-1130 SS+2d, 823B-ERS-A4-ELS-1040, 823B-ERS-A4-ELS-1060, 823B-ERS-A4-ELS-1080, 823B-ERS-CNP-0010 | 100% | 2013-02-07 | 2013-02-16 |  | 100% | 100% | 823B_AB |  |  |  |  |
| 823B-ERS-A4-RT-1110 |  | Running Tunnel (Bay 24) - WP+BS+Columns+Platform (750m³ conc) | 28d | 2013-04-17 A | 2013-05-21 A | 823B-ERS-A4-RT-1100 | 100% | 2013-02-23 | 2013-03-27 | Concrete [750 Cu m]; Rebar [99 t] | 100% | 100% | 823B_AB | 750 | 750 | m3 | 750 |
| 823B-ERS-A4-RT-1150 |  | Running Tunnel (Bay 23) - WP+BS+Columns+Platform (750m³ conc) | 28d | 2013-04-19 A | 2013-05-23 A | 823B-ERS-A4-RT-1140 | 100% | 2013-02-23 | 2013-03-27 | Concrete [750 Cu m]; Rebar [99 t] | 100% | 100% | 823B_AB | 750 | 750 | m3 | 750 |
| 823B-ERS-A4-RT-1040 |  | Running Tunnel (Bay 21) - Pile head | 6d | 2013-04-23 A | 2013-04-29 A | 823B-ERS-A4-RT-1010 | 100% | 2013-02-18 | 2013-02-23 |  | 100% | 100% | 823B_AB |  |  |  |  |
| 823B-ERS-A4-RT-1020 |  | Running Tunnel (Bay 22) - WP+BS+Columns+Platform (750m³ conc) | 28d | 2013-04-24 A | 2013-06-01 A | 823B-ERS-A4-RT-1010 | 100% | 2013-02-18 | 2013-03-21 | Concrete [750 Cu m]; Rebar [99 t] | 100% | 100% | 823B_AB | 750 | 750 | m3 | 750 |
| 823B-ERS-A4-RT-1050 |  | Running Tunnel (Bay 21) - WP+BS+Columns+Platform (750m³ conc) | 28d | 2013-04-30 A | 2013-06-01 A | 823B-ERS-A4-RT-1040 | 100% | 2013-02-25 | 2013-03-28 | Concrete [750 Cu m]; Rebar [99 t] | 100% | 100% | 823B_AB | 750 | 750 | m3 | 750 |
| 823B-ERS-A4-RT-1120 |  | Running Tunnel (Bay 24) - Remove Strut S1, RB, KP | 6d | 2013-05-16 A | 2013-05-22 A | 823B-ERS-A4-RT-1110 SS+23d | 100% | 2013-03-22 | 2013-03-28 |  | 100% | 100% | 823B_AB |  |  |  |  |
| 823B-ERS-A4-RT-1160 |  | Running Tunnel (Bay 23) - Remove Strut S1, RB, KP | 6d | 2013-05-18 A | 2013-05-24 A | 823B-ERS-A4-RT-1150 SS+22d | 100% | 2013-03-21 | 2013-03-27 |  | 100% | 100% | 823B_AB |  |  |  |  |
| 823B-ERS-A4-RT-1060 |  | Running Tunnel (Bay 21) - Remove Strut S1, RB, KP | 6d | 2013-05-21 A | 2013-06-03 A | 823B-ERS-A4-RT-1050 SS+20d | 100% | 2013-03-20 | 2013-03-26 |  | 100% | 100% | 823B_AB |  |  |  |  |
| 823B-ERS-A4-RT-1030 |  | Running Tunnel (Bay 22) - Remove Strut S1, RB, KP | 6d | 2013-05-28 A | 2013-06-03 A | 823B-ERS-A4-RT-1020 SS+26d | 100% | 2013-03-20 | 2013-03-26 |  | 100% | 100% | 823B_AB |  |  |  |  |
| 823B-ERS-A4-RT-1130 |  | Running Tunnel (Bay 24) - Mass Concrete (invert & walkway) (188m³ conc) | 9d | 2013-06-01 A | 2013-06-11 A | 823B-ERS-A4-RT-1110 SS+17d | 100% | 2013-03-15 | 2013-03-25 | Concrete [188 Cu m] | 100% | 100% | 823B_AB | 188 | 188 | m3 | 188 |
| 823B-ERS-A4-RT-1170 |  | Running Tunnel (Bay 23) - Mass Concrete (invert & walkway) (186m³ conc) | 8d | 2013-06-01 A | 2013-06-10 A | 823B-ERS-A4-RT-1150 SS+20d | 100% | 2013-03-19 | 2013-03-27 | Concrete [186 Cu m] | 100% | 100% | 823B_AB | 186 | 186 | m3 | 186 |
| 823B-ERS-A4-RT-1180 |  | Running Tunnel (Bay 23) - Staircase (126m³ conc) | 28d | 2013-06-01 A | 2013-08-24 A | 823B-ERS-A4-RT-1150 SS | 100% | 2013-02-23 | 2013-03-27 | Concrete [126 Cu m] | 100% | 100% | 823B_AB | 126 | 126 | m3 | 126 |
| 823B-ERS-A4-RT-1070 |  | Running Tunnel (Bay 22 & 21) - Mass Concrete (invert & walkway) (374m³ conc) | 8d | 2013-06-03 A | 2013-06-11 A | 823B-ERS-A4-RT-1060 SS, 823B-ERS-A4-RT-1030 SS | 100% | 2013-03-20 | 2013-03-28 | Concrete [374 Cu m] | 100% | 100% | 823B_AB | 374 | 374 | m3 | 374 |
| 823B-ERS-A4-RT-1080 |  | Running Tunnel (Bay 22 & 21) - Steel frame installation | 36d | 2013-06-03 A | 2013-08-24 A | 823B-DP009-070, 823B-ERS-A4-RT-1030, 823B-ERS-A4-RT-1060, 823B-ERS-A4-RT-1070 SS+280d | 100% | 2014-03-01 | 2014-04-12 |  | 100% | 100% | 823B_AB |  |  |  |  |
| 823B-ERS-A4-RT-1190 |  | Running Tunnel (Bay 24 & 23) - Steel frame installation | 36d | 2013-06-03 A | 2014-03-01 A | 823B-ERS-A4-RT-1110 SS, 823B-DP009-070, 823B-ERS-A4-RT-1080 | 100% | 2014-04-14 | 2014-05-30 |  | 100% | 100% | 823B_AB |  |  |  |  |
| 823B-ERS-A4-RT-1090 |  | Running Tunnel (Bay 22 & 21) - Noise absorption panels | 12d | 2013-06-17 A | 2013-08-31 A | 823B-ERS-A4-RT-1080 SS+143d | 100% | 2014-08-25 | 2014-09-06 |  | 100% | 100% | 823B_AB |  |  |  |  |
| 823B-ERS-A4-RT-1200 |  | Running Tunnel (Bay 24 & 23) - Noise absorption panels | 12d | 2013-06-17 A | 2014-06-03 A | 823B-ERS-A4-RT-1190, 823B-ERS-A4-RT-1090 | 100% | 2014-09-08 | 2014-09-22 |  | 100% | 100% | 823B_AB |  |  |  |  |
| 823B-ERS-A4-RT-1175 |  | Running Tunnel (Bay 23 & 24) - Cable bracket installation | 12d | 2013-08-06 A | 2013-08-17 A | 823B-ERS-A4-RT-1110 SS+10d, 823B-ERS-A4-RT-1150 SS+10d | 100% | 2013-03-07 | 2013-03-20 |  | 100% | 100% | 823B_AB |  |  |  |  |
| 823B-ERS-A4-RT-1065 |  | Running Tunnel (Bay 21 & 22) - Cable bracket installation | 18d | 2013-08-19 A | 2013-09-06 A | 823B-ERS-A4-RT-1020 SS+10d, 823B-ERS-A4-RT-1050 SS+10d | 100% | 2013-03-08 | 2013-03-28 |  | 100% | 100% | 823B_AB |  |  |  |  |
|  | 5 | **AREA 5 - CH124+010 to CH124+134** |  | 2011-02-14 | 2014-08-07 |  |  |  |  |  |  |  |  |  |  |  |  |
| 823B-ERS-CNP-0010 |  | CNP Application | 28d | 2012-12-01 A | 2013-01-05 A | 823B-ERS-A1-DW-1010, 823B-ERS-A2-DW-1010, 823B-ERS-A3-DW-1010, 823B-ERS-A4-DW-1010, 823B-ERS-A5-DW-1010, 823B-ERS-A6-DW-1010 | 100% |  |  |  | 100% | 100% | 823B_AB |  |  |  |  |

| ID | WBS | Activity | Duration | Start | Finish | Predecessors | Complete | Planned start | Planned finish | Resources | user_text4 | user_text6 | user_text7 | user_integer1 | user_text1 | user_text5 | 823B_As-built |
| --- | --- | --- | --- | --- | --- | --- | --- | --- | --- | --- | --- | --- | --- | --- | --- | --- | --- |
|  | 1 | **D-Wall Construction** |  | 2011-02-14 | 2012-09-08 |  |  |  |  |  |  |  |  |  |  |  |  |
| 823B-ERS-A5-DW-1010 |  | D-wall construction completed (incl pumping test, socket H-Pile) (8,485m³ conc) | 467d | 2011-02-14 A | 2012-09-08 A | 823B-AC-0095, 823B-AC-0100, 823B-AC-0105, 823B-AC-0110, 823B-AC-0115, 823B-A-PWS-0240, 823B-A-PWS-0140, 823B-A-PWS-0150, 823B-A-PWS-0160, 823B-A-PWS-0170, 823B-A-TWS-0110, 823B-A-PWS-0430 | 100% |  |  | Concrete [8485 Cu m] | 8485 | 100% | 100% | 8485 | m3 | 8485 | 823B_AB |
|  | 2 | **ELS Works** |  | 2012-09-10 | 2013-05-13 |  |  |  |  |  |  |  |  |  |  |  |  |
| 823B-ERS-A5-ELS-1010 |  | Bulk excavation Stage 1 (+12.1mPD) (26,322m³) | 40d | 2012-09-10 A | 2012-10-29 A | 823B-ERS-A5-DW-1010, 823B-DP002-070 | 100% |  |  | Bulk Excavation [26322 Cu m]; Excavation [26322 Cu m] | 26322 | 100% | 100% | 26322 | m3 | 26322 | 823B_AB |
| 823B-ERS-A5-ELS-1020 |  | Concrete Strut S1 (830m³ conc) | 18d | 2012-10-08 A | 2012-10-29 A | 823B-ERS-A5-ELS-1010 SS+22d | 100% |  |  | Concrete [830 Cu m]; Rebar [108 t] | 830 | 100% | 100% | 830 | m3 | 830 | 823B_AB |
| 823B-ERS-A5-ELS-1030 |  | Pile Load Test | 11d | 2012-10-30 A | 2012-11-10 A | 823B-ERS-A5-ELS-1010 | 100% |  |  |  |  | 100% | 100% |  |  |  | 823B_AB |
| 823B-ERS-A5-ELS-1040 |  | Concrete Strut S1 (83m³ conc) | 6d | 2012-11-12 A | 2012-11-17 A | 823B-ERS-A5-ELS-1030, 823B-ERS-A5-ELS-1020 | 100% |  |  | Concrete [83 Cu m]; Rebar [11 t] | 83 | 100% | 100% | 83 | m3 | 83 | 823B_AB |
| 823B-ERS-A5-ELS-1050 |  | Bulk excavation Stage 2 (+4.225mPD) (17,110m³) | 26d | 2012-11-16 A | 2012-12-27 A | 823B-ERS-A6-ELS-1050 | 100% | 2012-11-16 | 2012-12-15 | Bulk Excavation [17110 Cu m]; Excavation [17110 Cu m] | 17110 | 100% | 100% | 17110 | m3 | 17110 | 823B_AB |
| 823B-ERS-A5-ELS-1060 |  | Expose coupler | 17d | 2012-11-29 A | 2012-12-18 A | 823B-ERS-A6-ELS-1060 | 100% |  |  |  |  | 100% | 100% |  |  |  | 823B_AB |
| 823B-ERS-A5-ELS-1080 |  | Capping Beam Westside | 9d | 2012-12-03 A | 2012-12-12 A | 823B-ERS-A4-ELS-1040 | 100% |  |  |  |  | 100% | 100% |  |  |  | 823B_AB |
| 823B-ERS-A5-ELS-1070 |  | Running beam | 17d | 2012-12-04 A | 2012-12-22 A | 823B-ERS-A6-ELS-1070 | 100% |  |  |  |  | 100% | 100% |  |  |  | 823B_AB |
| 823B-ERS-A5-ELS-1100 |  | Pumping test - Stage 2 | 17d | 2012-12-17 A | 2013-01-08 A | 823B-ERS-A4-ELS-1070 SS, 823B-ERS-A4-ELS-1030, 823B-ERS-A5-ELS-1040 | 100% |  |  |  |  | 100% | 100% |  |  |  | 823B_AB |
| 823B-ERS-A5-ELS-1160 |  | Bulk excavation Stage 3 (-1.5mPD) (3,283m³) | 4d | 2012-12-29 A | 2013-01-03 A | 823B-ERS-A5-ELS-1130 SS+2d | 100% | 2013-01-16 | 2013-01-19 | Bulk Excavation [3283 Cu m]; Excavation [3283 Cu m] | 3283 | 100% | 100% | 3283 | m3 | 3283 | 823B_AB |
| 823B-ERS-A5-ELS-1110 |  | Concrete Strut S2 (1,332m³ conc) | 10d | 2013-01-07 A | 2013-01-19 A | 823B-ERS-A5-ELS-1100 SS, 823B-ERS-A5-ELS-1050 | 100% | 2012-12-17 | 2012-12-29 | Rebar [174 t]; Concrete [1332 Cu m] | 1332 | 100% | 100% | 1332 | m3 | 1332 | 823B_AB |
| 823B-ERS-A5-ELS-1090 |  | Capping Beam Eastside | 13d | 2013-01-09 A | 2013-01-23 A | 823B-ERS-A4-ELS-1080 | 100% |  |  |  |  | 100% | 100% |  |  |  | 823B_AB |
| 823B-ERS-A5-ELS-1120 |  | Columns (between Conc Strut S1 & S2) (53m³ conc) | 9d | 2013-01-10 A | 2013-02-02 A | 823B-ERS-A5-ELS-1110 SS+6d | 100% | 2012-12-24 | 2013-01-05 | Concrete [53 Cu m]; Rebar [7 t] | 53 | 100% | 100% | 53 | m3 | 53 | 823B_AB |
| 823B-ERS-A5-ELS-1170 |  | Rock Joint Mapping and Rock Bolt (P84-88) | 6d | 2013-01-21 A | 2013-01-26 A | 823B-ERS-A5-ELS-1160 | 100% |  |  |  |  | 100% | 100% |  |  |  | 823B_AB |
| 823B-ERS-A5-ELS-1180 |  | S1 Strut | 4d | 2013-01-24 A | 2013-01-28 A | 823B-ERS-A5-ELS-1170 SS+3d | 100% |  |  |  |  | 100% | 100% |  |  |  | 823B_AB |
| 823B-ERS-A5-ELS-1130 |  | Bulk excavation Stage 3 (-1.5mPD) (12,348m³) | 8d | 2013-01-26 A | 2013-02-04 A | 823B-ERS-A5-ELS-1120, 823B-ERS-A6-ELS-1120 SS | 100% | 2013-01-14 | 2013-01-22 | Bulk Excavation [12348 Cu m]; Excavation [12348 Cu m] | 12348 | 100% | 100% | 12348 | m3 | 12348 | 823B_AB |
| 823B-ERS-A5-ELS-1140 |  | S1 Strut | 6d | 2013-01-29 A | 2013-02-04 A | 823B-ERS-A5-ELS-1130 SS+2d | 100% | 2013-01-16 | 2013-01-22 |  |  | 100% | 100% |  |  |  | 823B_AB |
| 823B-ERS-A5-ELS-1210 |  | S1 Strut | 5d | 2013-01-29 A | 2013-02-02 A | 823B-ERS-A5-ELS-1200, 823B-ERS-A5-ELS-1180 | 100% |  |  |  |  | 100% | 100% |  |  |  | 823B_AB |
| 823B-ERS-A5-ELS-1200 |  | Bulk excavation Stage 3 (-1.5mPD) (3,450m³) | 8d | 2013-01-30 A | 2013-02-07 A | 823B-ERS-A5-ELS-1160 SS | 100% | 2013-01-16 | 2013-01-24 | Bulk Excavation [3450 Cu m]; Excavation [3450 Cu m] | 3450 | 100% | 100% | 3450 | m3 | 3450 | 823B_AB |
| 823B-ERS-A5-ELS-1230 |  | Earth Mat @ Bay 30 | 4d | 2013-02-09 A | 2013-02-16 A | 823B-ERS-A5-ELS-1150 SS+15d | 100% |  |  |  |  | 100% | 100% |  |  |  | 823B_AB |
| 823B-ERS-A5-ELS-1240 |  | Earth Mat @ Bay 29 | 4d | 2013-02-09 A | 2013-02-16 A | 823B-ERS-A5-ELS-1230 SS, 823B-ERS-A5-ELS-1150 | 100% |  |  |  |  | 100% | 100% |  |  |  | 823B_AB |
| 823B-ERS-A5-ELS-1190 |  | Bulk excavation Stage 4 (-5.2mPD) (1,750m³) | 3d | 2013-02-15 A | 2013-02-18 A | 823B-ERS-A5-ELS-1180 SS+2d | 100% | 2013-01-26 | 2013-01-29 | Bulk Excavation [1750 Cu m]; Excavation [1750 Cu m] | 1750 | 100% | 100% | 1750 | m3 | 1750 | 823B_AB |
| 823B-ERS-A5-ELS-1150 |  | Bulk excavation Stage 4 (-5.2mPD) (9,250m³) | 10d | 2013-03-01 A | 2013-03-12 A | 823B-ERS-A5-ELS-1140 | 100% | 2013-01-23 | 2013-02-02 | Bulk Excavation [9250 Cu m]; Excavation [9250 Cu m] | 9250 | 100% | 100% | 9250 | m3 | 9250 | 823B_AB |
| 823B-ERS-A5-ELS-1220 |  | Bulk excavation Stage 4 (-5.2mPD) (2,320m³) | 6d | 2013-05-07 A | 2013-05-13 A | 823B-ERS-A5-ELS-1210 | 100% | 2013-02-04 | 2013-02-09 | Bulk Excavation [2320 Cu m]; Excavation [2320 Cu m] | 2320 | 100% | 100% | 2320 | m3 | 2320 | 823B_AB |

| ID | WBS | Activity | Duration | Start | Finish | Predecessors | Complete | Planned start | Planned finish | Resources | user_text6 | user_text7 | 823B_As-built | user_text4 | user_integer1 | user_text1 | user_text5 |
| --- | --- | --- | --- | --- | --- | --- | --- | --- | --- | --- | --- | --- | --- | --- | --- | --- | --- |
|  | 3 | **Tunnel Structure** |  | 2013-03-07 | 2014-08-07 |  |  |  |  |  |  |  |  |  |  |  |  |
| 823B-ERS-A5-RT-1130 |  | Running Tunnel (Bay 30) - Pile head | 6d | 2013-03-07 A | 2013-03-13 A | 823B-ERS-A5-ELS-1230 | 100% | 2013-02-18 | 2013-02-23 |  | 100% | 100% | 823B_AB |  |  |  |  |
| 823B-ERS-A5-RT-1200 |  | Running Tunnel (Bay 28) - Pile head | 6d | 2013-03-07 A | 2013-03-13 A | 823B-ERS-A5-RT-1170 SS, 823B-ERS-A5-ELS-1150 | 100% | 2013-02-18 | 2013-02-23 |  | 100% | 100% | 823B_AB |  |  |  |  |
| 823B-ERS-A5-RT-1140 |  | Running Tunnel (Bay 30) - WP+BS+Columns+Platform (750m³ conc) | 28d | 2013-03-14 A | 2013-04-19 A | 823B-ERS-A5-RT-1130 | 100% | 2013-02-25 | 2013-03-28 | Concrete [750 Cu m]; Rebar [99 t] | 100% | 100% | 823B_AB | 750 | 750 | m3 | 750 |
| 823B-ERS-A5-RT-1210 |  | Running Tunnel (Bay 28) - WP+BS+Columns+Platform (750m³ conc) | 28d | 2013-03-14 A | 2013-04-19 A | 823B-ERS-A5-RT-1200 | 100% | 2013-02-25 | 2013-03-28 | Concrete [750 Cu m]; Rebar [99 t] | 100% | 100% | 823B_AB | 750 | 750 | m3 | 750 |
| 823B-ERS-A5-RT-1170 |  | Running Tunnel (Bay 29) - Pile head | 6d | 2013-03-16 A | 2013-03-22 A | 823B-ERS-A5-ELS-1240 | 100% | 2013-02-18 | 2013-02-23 |  | 100% | 100% | 823B_AB |  |  |  |  |
| 823B-ERS-A5-RT-1180 |  | Running Tunnel (Bay 29) - WP+BS+Columns+Platform (750m³ conc) | 28d | 2013-03-23 A | 2013-04-29 A | 823B-ERS-A5-RT-1170 | 100% | 2013-02-25 | 2013-03-28 | Concrete [750 Cu m]; Rebar [99 t] | 100% | 100% | 823B_AB | 750 | 750 | m3 | 750 |
| 823B-ERS-A5-RT-1090 |  | Running Tunnel (Bay 25) - Pile head | 6d | 2013-04-05 A | 2013-04-11 A | 823B-ERS-A5-RT-1050 SS, 823B-ERS-A5-ELS-1220 | 100% | 2013-02-14 | 2013-02-20 |  | 100% | 100% | 823B_AB |  |  |  |  |
| 823B-ERS-A5-RT-1100 |  | Running Tunnel (Bay 25) - WP+BS+Columns+Platform (750m³ conc) | 28d | 2013-04-12 A | 2013-05-15 A | 823B-ERS-A5-RT-1090 | 100% | 2013-02-21 | 2013-03-25 | Concrete [99 Cu m] | 100% | 100% | 823B_AB | 750 | 750 | m3 | 750 |
| 823B-ERS-A5-RT-1150 |  | Running Tunnel (Bay 30) - Remove Strut S1, RB, KP | 6d | 2013-04-20 A | 2013-04-26 A | 823B-ERS-A5-RT-1140 SS+20d | 100% | 2013-03-20 | 2013-03-26 |  | 100% | 100% | 823B_AB |  |  |  |  |
| 823B-ERS-A5-RT-1220 |  | Running Tunnel (Bay 28) - Remove Strut S1, RB, KP | 6d | 2013-04-20 A | 2013-04-26 A | 823B-ERS-A5-RT-1210 SS+22d | 100% | 2013-03-22 | 2013-03-28 |  | 100% | 100% | 823B_AB |  |  |  |  |
| 823B-ERS-A5-RT-1190 |  | Running Tunnel (Bay 29) - Remove Strut S1, RB, KP | 6d | 2013-04-23 A | 2013-04-29 A | 823B-ERS-A5-RT-1180 SS+22d | 100% | 2013-03-22 | 2013-03-28 |  | 100% | 100% | 823B_AB |  |  |  |  |
| 823B-ERS-A5-RT-1110 |  | Running Tunnel (Bay 25) - Remove Strut S1, RB, KP | 6d | 2013-05-13 A | 2013-05-18 A | 823B-ERS-A5-RT-1100 SS+25d | 100% | 2013-03-22 | 2013-03-28 |  | 100% | 100% | 823B_AB |  |  |  |  |
| 823B-ERS-A5-RT-1010 |  | Running Tunnel (Bay 27) - Pile head | 6d | 2013-06-01 A | 2013-06-07 A | 823B-ERS-A5-ELS-1060, 823B-ERS-A5-ELS-1070, 823B-ERS-A5-ELS-1080, 823B-ERS-A5-ELS-1090, 823B-ERS-A5-ELS-1190, 823B-ERS-A5-ELS-1150 SS, 823B-ERS-CNP-0010 | 100% | 2013-01-30 | 2013-02-05 |  | 100% | 100% | 823B_AB |  |  |  |  |
| 823B-ERS-A5-RT-1160 |  | Running Tunnel (Bay 30) - Staircase (126m³ conc) | 28d | 2013-06-01 A | 2013-07-11 A | 823B-ERS-A5-RT-1140 SS | 100% | 2013-02-25 | 2013-03-28 | Concrete [126 Cu m] | 100% | 100% | 823B_AB | 126 | 126 | m3 | 126 |
| 823B-ERS-A5-RT-1230 |  | Running Tunnel (Bay 28 to 30) - Mass Concrete (invert & walkway) (561m³ conc) | 8d | 2013-06-01 A | 2013-07-02 A | 823B-ERS-A5-RT-1140 SS+20d, 823B-ERS-A5-RT-1180 SS+20d, 823B-ERS-A5-RT-1210 SS+20d | 100% | 2013-03-20 | 2013-03-28 | Concrete [561 Cu m] | 100% | 100% | 823B_AB | 561 | 561 | m3 | 561 |
| 823B-ERS-A5-RT-1240 |  | Running Tunnel (Bay 27 & 25) - Steel frame installation | 54d | 2013-06-03 A | 2014-03-03 A | 823B-ERS-A5-RT-1140 SS+8d, 823B-DP009-070, 823B-ERS-A4-RT-1190 | 100% | 2014-05-31 | 2014-08-04 |  | 100% | 100% | 823B_AB |  |  |  |  |
| 823B-ERS-A5-RT-1260 |  | Running Tunnel (Bay 30 & 28) - Steel frame installation | 54d | 2013-06-03 A | 2014-06-09 A | 823B-ERS-A5-RT-1240 | 100% | 2014-08-05 | 2014-10-09 |  | 100% | 100% | 823B_AB |  |  |  |  |
| 823B-ERS-A5-RT-1020 |  | Running Tunnel (Bay 27) - WP+BS+Columns+Platform (750m³ conc) | 28d | 2013-06-08 A | 2013-07-02 A | 823B-ERS-A5-RT-1010 | 100% | 2013-02-06 | 2013-03-13 | Concrete [750 Cu m]; Rebar [99 t] | 100% | 100% | 823B_AB | 750 | 750 | m3 | 750 |
| 823B-ERS-A5-RT-1050 |  | Running Tunnel (Bay 26) - Pile head | 6d | 2013-06-08 A | 2013-06-15 A | 823B-ERS-A5-RT-1010, 823B-ERS-A5-ELS-1220, 823B-ERS-A5-ELS-1190 | 100% | 2013-02-14 | 2013-02-20 |  | 100% | 100% | 823B_AB |  |  |  |  |
| 823B-ERS-A5-RT-1060 |  | Running Tunnel (Bay 26) - WP+BS+Columns+Platform (750m³ conc) | 28d | 2013-06-17 A | 2013-07-02 A | 823B-ERS-A5-RT-1050 | 100% | 2013-02-21 | 2013-03-25 | Concrete [750 Cu m]; Rebar [99 t] | 100% | 100% | 823B_AB | 750 | 750 | m3 | 750 |
| 823B-ERS-A5-RT-1250 |  | Running Tunnel (Bay 27 & 25) - Noise absorption panels | 18d | 2013-06-17 A | 2014-08-01 A | 823B-ERS-A5-RT-1240, 823B-ERS-A4-RT-1200 | 100% | 2014-09-23 | 2014-10-15 |  | 100% | 100% | 823B_AB |  |  |  |  |
| 823B-ERS-A5-RT-1270 |  | Running Tunnel (Bay 30 & 28) - Noise absorption panels | 18d | 2013-06-17 A | 2014-08-07 A | 823B-ERS-A5-RT-1260, 823B-ERS-A5-RT-1250 | 100% | 2014-10-16 | 2014-11-05 |  | 100% | 100% | 823B_AB |  |  |  |  |
| 823B-ERS-A5-RT-1040 |  | Running Tunnel (Bay 27) - Mass Concrete (invert & walkway) (186m³ conc) | 10d | 2013-06-19 A | 2013-06-29 A | 823B-ERS-A5-RT-1030 | 100% | 2013-03-18 | 2013-03-28 | Concrete [186 Cu m] | 100% | 100% | 823B_AB | 186 | 186 | m3 | 186 |
| 823B-ERS-A5-RT-1224 |  | Running Tunnel (Bay 26 to 28) - Cable bracket installation | 21d | 2013-06-19 A | 2013-07-06 A | 823B-ERS-A5-RT-1210 SS, 823B-ERS-A5-RT-1020 SS+10d, 823B-ERS-A5-RT-1060 SS+10d | 100% | 2013-03-05 | 2013-03-28 |  | 100% | 100% | 823B_AB |  |  |  |  |
| 823B-ERS-A5-RT-1222 |  | Running Tunnel (Bay 30 & 29) - Cable bracket installation | 18d | 2013-06-22 A | 2013-07-06 A | 823B-ERS-A5-RT-1140 SS+10d, 823B-ERS-A5-RT-1180 SS | 100% | 2013-03-08 | 2013-03-28 |  | 100% | 100% | 823B_AB |  |  |  |  |
| 823B-ERS-A5-RT-1120 |  | Running Tunnel (Bay 26 & 25) - Mass Concrete (invert & walkway) (374m³ conc) | 10d | 2013-06-24 A | 2013-07-02 A | 823B-ERS-A5-RT-1060 SS+21d, 823B-ERS-A5-RT-1100 SS+21d | 100% | 2013-03-18 | 2013-03-28 | Concrete [374 Cu m] | 100% | 100% | 823B_AB | 374 | 374 | m3 | 374 |
| 823B-ERS-A5-RT-1030 |  | Running Tunnel (Bay 27) - Remove Strut S1, RB, KP | 6d | 2013-07-03 A | 2013-07-09 A | 823B-ERS-A5-RT-1020 SS+25d | 100% | 2013-03-11 | 2013-03-16 |  | 100% | 100% | 823B_AB |  |  |  |  |
| 823B-ERS-A5-RT-1070 |  | Running Tunnel (Bay 26) - Remove Strut S1, RB, KP | 6d | 2013-07-03 A | 2013-07-09 A | 823B-ERS-A5-RT-1060 SS+22d | 100% | 2013-03-19 | 2013-03-25 |  | 100% | 100% | 823B_AB |  |  |  |  |
| 823B-ERS-A5-RT-1115 |  | Running Tunnel (Bay 25) - Cable bracket installation | 7d | 2013-07-05 A | 2013-07-06 A | 823B-ERS-A4-RT-1175, 823B-ERS-A5-RT-1100 SS+10d | 100% | 2013-03-21 | 2013-03-28 |  | 100% | 100% | 823B_AB |  |  |  |  |
| 823B-ERS-A5-RT-1080 |  | Running Tunnel (Bay 26) - Staircase (126m³ conc) | 28d | 2013-08-01 A | 2013-09-21 A | 823B-ERS-A5-RT-1060 SS | 100% | 2013-02-21 | 2013-03-25 | Concrete [126 Cu m] | 100% | 100% | 823B_AB | 126 | 126 | m3 | 126 |

| ID | WBS | Activity | Duration | Start | Finish | Predecessors | Complete | Planned start | Planned finish | Constraint | Resources | user_text6 | user_text7 | 823B_As-built | user_text4 | user_integer1 | user_text1 | user_text5 |
| --- | --- | --- | --- | --- | --- | --- | --- | --- | --- | --- | --- | --- | --- | --- | --- | --- | --- | --- |
|  | 6 | **AREA 6 - CH124+134 to CH124+313** |  | 2011-03-15 | 2015-09-01 |  |  |  |  |  |  |  |  |  |  |  |  |  |
| 823B-ERS-BLP-0010 |  | Application for Blasting Permit | 14d | 2012-12-01 A | 2012-12-17 A | 823B-ERS-A6-DW-1010 | 100% |  |  |  |  | 100% | 100% | 823B_AB |  |  |  |  |
|  | 1 | **D-Wall Construction** |  | 2011-03-15 | 2012-09-27 |  |  |  |  |  |  |  |  |  |  |  |  |  |
| 823B-ERS-A6-DW-1010 |  | D-wall construction completed (incl. pumping test, socket H-Pile) (10,781m³ conc) | 458d | 2011-03-15 A | 2012-09-27 A | 823B-AC-0095, 823B-AC-0100, 823B-AC-0105, 823B-AC-0110, 823B-AC-0115, 823B-AC-0060, 823B-AC-0130, 823B-AC-0135, 823B-AC-0140, 823B-AC-0145, 823B-AC-0150, 823B-AC-0120, 823B-AC-0125, 823B-A-PWS-0240, 823B-A-PWS-0140, 823B-A-PWS-0150, 823B-A-PWS-0160, 823B-A-PWS-0170, 823B-A-TWS-0110, 823B-A-PWS-0430 | 100% |  |  |  | Concrete [10781 Cu m] | 100% | 100% | 823B_AB | 10781 | 10781 | m3 | 10781 |
|  | 2 | **ELS Works** |  | 2012-09-28 | 2013-08-21 |  |  |  |  |  |  |  |  |  |  |  |  |  |
| 823B-ERS-A6-ELS-1010 |  | Bulk excavation Stage 1 (+10.0mPD) CH124+142 to CH124+200 (8,781m³) | 6d | 2012-09-28 A | 2012-10-06 A | 823B-ERS-A6-DW-1010, 823B-DP002-070 | 100% |  |  |  | Bulk Excavation [8781 Cu m]; Excavation [8781 Cu m] | 100% | 100% | 823B_AB | 8781 | 8781 | m3 | 8781 |
| 823B-ERS-A6-ELS-1020 |  | S1 waling & strut | 6d | 2012-10-06 A | 2012-10-12 A | 823B-ERS-A6-ELS-1010 SS+5d | 100% |  |  |  |  | 100% | 100% | 823B_AB |  |  |  |  |
|  | 1 | **ERS Area** |  | 2012-10-10 | 2013-05-18 |  |  |  |  |  |  |  |  |  |  |  |  |  |
| 823B-ERS-A6-ELS-1030 |  | Concrete Strut S1 (113m³ conc) | 6d | 2012-10-10 A | 2012-10-16 A | 823B-ERS-A6-ELS-1020 SS+3d | 100% |  |  |  | Concrete [113 Cu m]; Rebar [15 t] | 100% | 100% | 823B_AB | 113 | 113 | m3 | 113 |
| 823B-ERS-A6-ELS-1040 |  | S1 waling & strut (CH124+142 to CH124+145) | 3d | 2012-11-03 A | 2012-11-06 A | 823B-ERS-A6-ELS-1230 SS+6d, 823B-ERS-A6-ELS-1030 | 100% |  |  |  |  | 100% | 100% | 823B_AB |  |  |  |  |
| 823B-ERS-A6-ELS-1050 |  | Bulk excavation Stage 2 (+4.225mPD) CH124+134 to CH124+145 (5,854m³) | 4d | 2012-11-12 A | 2012-11-15 A | 823B-ERS-A6-ELS-1040 | 100% |  |  |  | Bulk Excavation [5854 Cu m]; Excavation [5854 Cu m] | 100% | 100% | 823B_AB | 5854 | 5854 | m3 | 5854 |
| 823B-ERS-A6-ELS-1060 |  | Expose coupler | 3d | 2012-11-26 A | 2012-11-28 A | 823B-ERS-A6-ELS-1250 SS | 100% |  |  | start on 2012-11-26 |  | 100% | 100% | 823B_AB |  |  |  |  |
| 823B-ERS-A6-ELS-1070 |  | Running beam | 2d | 2012-12-01 A | 2012-12-03 A | 823B-ERS-A6-ELS-1060 SS+5d | 100% |  |  |  |  | 100% | 100% | 823B_AB |  |  |  |  |
| 823B-ERS-A6-ELS-1080 |  | Capping Beam Westside | 2d | 2012-12-13 A | 2012-12-14 A | 823B-ERS-A5-ELS-1080 | 100% |  |  |  |  | 100% | 100% | 823B_AB |  |  |  |  |
| 823B-ERS-A6-ELS-1100 |  | Concrete Strut S2 (164m³ conc) | 6d | 2013-01-02 A | 2013-01-07 A | 823B-ERS-A5-ELS-1110 SS, 823B-ERS-A6-ELS-1050, 823B-ERS-A6-ELS-1270 SS+3d | 100% | 2012-12-17 | 2012-12-22 |  | Concrete [164 Cu m]; Rebar [22 t] | 100% | 100% | 823B_AB | 164 | 164 | m3 | 164 |
| 823B-ERS-A6-ELS-1110 |  | Columns (between Conc Strut S1 & S2) (5m³ conc) | 5d | 2013-01-08 A | 2013-01-12 A | 823B-ERS-A6-ELS-1100 | 100% | 2012-12-24 | 2012-12-31 |  | Concrete [5 Cu m]; Rebar [1 t] | 100% | 100% | 823B_AB | 5 | 5 | m3 | 5 |
| 823B-ERS-A6-ELS-1130 |  | Bulk excavation Stage 3 (CH124+142 to CH124+164) (3,422m³) | 8d | 2013-01-11 A | 2013-01-19 A | 823B-ERS-A6-ELS-1080 | 100% | 2012-12-15 | 2012-12-24 |  | Bulk Excavation [3422 Cu m]; Excavation [3422 Cu m] | 100% | 100% | 823B_AB | 3422 | 3422 | m3 | 3422 |
| 823B-ERS-A6-ELS-1140 |  | S3 waling & strut | 9d | 2013-01-12 A | 2013-01-22 A | 823B-ERS-A6-ELS-1130 | 100% | 2012-12-27 | 2013-01-07 |  |  | 100% | 100% | 823B_AB |  |  |  |  |
| 823B-ERS-A6-ELS-1150 |  | Bulk excavation Stage 4 (CH124+142 to CH124+164) (3,422m³) | 8d | 2013-01-18 A | 2013-01-26 A | 823B-ERS-A6-ELS-1140 | 100% | 2013-01-08 | 2013-01-16 |  | Bulk Excavation [3422 Cu m]; Excavation [3422 Cu m] | 100% | 100% | 823B_AB | 3422 | 3422 | m3 | 3422 |
| 823B-ERS-A6-ELS-1090 |  | Capping Beam Eastside | 3d | 2013-01-24 A | 2013-01-26 A | 823B-ERS-A5-ELS-1090 | 100% |  |  |  |  | 100% | 100% | 823B_AB |  |  |  |  |
| 823B-ERS-A6-ELS-1120 |  | Bulk excavation Stage 3 (-1.5mPD) (1,372m³) | 1d | 2013-01-26 A | 2013-01-26 A | 823B-ERS-A6-ELS-1110, 823B-ERS-A6-ELS-1150 SS+5d | 100% | 2013-01-14 | 2013-01-14 |  | Bulk Excavation [1372 Cu m]; Excavation [1372 Cu m] | 100% | 100% | 823B_AB | 1372 | 1372 | m3 | 1372 |
| 823B-ERS-A6-ELS-1160 |  | S4 waling & strut | 8d | 2013-01-26 A | 2013-02-05 A | 823B-ERS-A6-ELS-1150 | 100% | 2013-01-17 | 2013-01-25 |  |  | 100% | 100% | 823B_AB |  |  |  |  |
| 823B-ERS-A6-ELS-1170 |  | Bulk excavation Stage 5 (CH124+142 to CH124+164) (2,566m³) | 6d | 2013-02-18 A | 2013-02-23 A | 823B-ERS-A6-ELS-1160 | 100% | 2013-01-26 | 2013-02-01 |  | Bulk Excavation [2566 Cu m]; Excavation [2566 Cu m] | 100% | 100% | 823B_AB | 2566 | 2566 | m3 | 2566 |
| 823B-ERS-A6-ELS-1180 |  | S5 waling & strut | 6d | 2013-02-25 A | 2013-03-02 A | 823B-ERS-A6-ELS-1170, 823B-ERS-A6-ELS-1090 | 100% | 2013-02-02 | 2013-02-08 |  |  | 100% | 100% | 823B_AB |  |  |  |  |
| 823B-ERS-A6-ELS-1190 |  | Bulk excavation Stage 6 (CH124+142 to CH124+164) (3,522m³) | 8d | 2013-05-03 A | 2013-05-11 A | 823B-ERS-A6-ELS-1180 | 100% | 2013-02-09 | 2013-02-21 |  | Bulk Excavation [3522 Cu m]; Excavation [3522 Cu m] | 100% | 100% | 823B_AB | 3522 | 3522 | m3 | 3522 |
| 823B-ERS-A6-ELS-1200 |  | S6 waling & strut | 8d | 2013-05-08 A | 2013-05-16 A | 823B-ERS-A6-ELS-1190 | 100% | 2013-02-22 | 2013-03-02 |  |  | 100% | 100% | 823B_AB |  |  |  |  |
| 823B-ERS-A6-ELS-1210 |  | Bulk excavation to final level (CH124+142 to CH124+164) (2,566m³) | 6d | 2013-05-13 A | 2013-05-18 A | 823B-ERS-A6-ELS-1200 | 100% | 2013-03-04 | 2013-03-09 |  | Bulk Excavation [2566 Cu m]; Excavation [2566 Cu m] | 100% | 100% | 823B_AB | 2566 | 2566 | m3 | 2566 |

| ID | WBS | Activity | Duration | Start | Finish | Predecessors | Complete | Planned start | Planned finish | Resources | user_text4 | user_text6 | user_text7 | user_integer1 | user_text1 | user_text5 | 823B_As-built |
| --- | --- | --- | --- | --- | --- | --- | --- | --- | --- | --- | --- | --- | --- | --- | --- | --- | --- |
|  | 2 | **Plant Building Area** |  | 2012-10-27 | 2013-05-18 |  |  |  |  |  |  |  |  |  |  |  |  |
| 823B-ERS-A6-ELS-1220 |  | Bulk excavation Stage 1 (+10.0mPD) CH124+200 to CH124+254 (11,709m³) | 8d | 2012-10-27 A | 2012-11-05 A | 823B-ERS-A6-ELS-1010 | 100% |  |  | Bulk Excavation [11709 Cu m]; Excavation [11709 Cu m] | 11709 | 100% | 100% | 11709 | m3 | 11709 | 823B_AB |
| 823B-ERS-A6-ELS-1230 |  | S1 waling & strut | 20d | 2012-10-27 A | 2012-11-19 A | 823B-ERS-A6-ELS-1020 | 100% |  |  |  |  | 100% | 100% |  |  |  | 823B_AB |
| 823B-ERS-A6-ELS-1240 |  | Bulk excavation Stage 2 (+6.0mPD) CH124+188 to CH124+254 (29,272m³) | 20d | 2012-11-08 A | 2012-11-30 A | 823B-ERS-A6-ELS-1230 SS+10d, 823B-ERS-A6-ELS-1220 | 100% |  |  | Bulk Excavation [29272 Cu m]; Excavation [29272 Cu m] | 29272 | 100% | 100% | 29272 | m3 | 29272 | 823B_AB |
| 823B-ERS-A6-ELS-1250 |  | S2 waling & strut | 23d | 2012-11-20 A | 2012-12-15 A | 823B-ERS-A6-ELS-1050 SS+7d | 100% |  |  |  |  | 100% | 100% |  |  |  | 823B_AB |
| 823B-ERS-A6-ELS-1260 |  | Excavation to expose rock head (4,277m³) | 10d | 2012-12-01 A | 2012-12-12 A | 823B-ERS-A6-ELS-1250 SS | 100% |  |  | Bulk Excavation [4277 Cu m]; Excavation [4277 Cu m] | 4277 | 100% | 100% | 4277 | m3 | 4277 | 823B_AB |
| 823B-ERS-A6-ELS-1270 |  | Blasting work for rock breaking for 3rd layer (5,988m³) | 14d | 2013-02-15 A | 2013-02-23 A | 823B-ERS-A6-ELS-1260, 823B-ERS-BLP-0010 SS+10d | 100% | 2012-12-13 | 2012-12-31 | Excavation [5988 Cu m]; Bulk Excavation [5988 Cu m] | 5988 | 100% | 100% | 5988 | m3 | 5988 | 823B_AB |
| 823B-ERS-A6-ELS-1280 |  | S3 waling & strut | 12d | 2013-02-25 A | 2013-03-09 A | 823B-ERS-A6-ELS-1270 | 100% | 2013-01-02 | 2013-01-15 |  |  | 100% | 100% |  |  |  | 823B_AB |
| 823B-ERS-A6-ELS-1290 |  | Blasting work with Rock breaking / splitting for 4th layer (10,694m³) | 25d | 2013-03-21 A | 2013-04-20 A | 823B-ERS-A6-ELS-1280 | 100% | 2013-01-16 | 2013-02-16 | Bulk Excavation [10694 Cu m]; Excavation [10694 Cu m] | 10694 | 100% | 100% | 10694 | m3 | 10694 | 823B_AB |
| 823B-ERS-A6-ELS-1300 |  | S4 waling & strut | 14d | 2013-04-22 A | 2013-05-08 A | 823B-ERS-A6-ELS-1290 | 100% | 2013-02-18 | 2013-03-05 |  |  | 100% | 100% |  |  |  | 823B_AB |
| 823B-ERS-A6-ELS-1310 |  | Rock dowel | 14d | 2013-04-22 A | 2013-05-08 A | 823B-ERS-A6-ELS-1300 SS, 823B-ERS-A6-ELS-1290 | 100% | 2013-02-18 | 2013-03-05 |  |  | 100% | 100% |  |  |  | 823B_AB |
| 823B-ERS-A6-ELS-1320 |  | Rock splitting final level (1,711m³) | 4d | 2013-05-09 A | 2013-05-18 A | 823B-ERS-A6-ELS-1300, 823B-ERS-A6-ELS-1310 | 100% | 2013-03-06 | 2013-03-09 | Excavation [1711 Cu m]; Bulk Excavation [1711 Cu m] | 1711 | 100% | 100% | 1711 | m3 | 1711 | 823B_AB |
|  | 3 | **Crossover Area** |  | 2012-12-01 | 2013-08-21 |  |  |  |  |  |  |  |  |  |  |  |  |
| 823B-ERS-A6-ELS-1330 |  | Bulk excavation Stage 1 (+10.0mPD) CH124+254 to CH124+312 (1,283m³) | 3d | 2012-12-01 A | 2012-12-29 A | 823B-ERS-A6-ELS-1240 | 100% | 2012-12-01 | 2012-12-04 | Bulk Excavation [1283 Cu m]; Excavation [1283 Cu m] | 1283 | 100% | 100% | 1283 | m3 | 1283 | 823B_AB |
| 823B-ERS-A6-ELS-1340 |  | S1 waling & strut | 12d | 2012-12-05 A | 2013-07-13 A | 823B-ERS-A6-ELS-1330 | 100% | 2012-12-05 | 2012-12-18 |  |  | 100% | 100% |  |  |  | 823B_AB |
| 823B-ERS-A6-ELS-1350 |  | Bulk excavation Stage 2 (+6.0mPD) CH124+254 to CH124+312 (5,561m³) | 13d | 2013-02-02 A | 2013-05-31 A | 823B-ERS-A6-ELS-1340 | 100% | 2012-12-19 | 2013-01-05 | Bulk Excavation [5561 Cu m]; Excavation [5561 Cu m] | 5561 | 100% | 100% | 5561 | m3 | 5561 | 823B_AB |
| 823B-ERS-A6-ELS-1360 |  | S2 waling & strut | 9d | 2013-05-06 A | 2013-07-27 A | 823B-ERS-A6-ELS-1350 | 100% | 2013-01-07 | 2013-01-16 |  |  | 100% | 100% |  |  |  | 823B_AB |
| 823B-ERS-A6-ELS-1370 |  | Bulk excavation Stage 3 (+1.0mPD) CH124+254 to CH124+312 (7,699m³) | 18d | 2013-05-06 A | 2013-05-31 A | 823B-ERS-A6-ELS-1350, 823B-ERS-A6-ELS-1360 SS | 100% | 2013-01-07 | 2013-01-26 | Bulk Excavation [7699 Cu m]; Excavation [7699 Cu m] | 7699 | 100% | 100% | 7699 | m3 | 7699 | 823B_AB |
| 823B-ERS-A6-ELS-1390 |  | Bulk excavation Stage 4 (+1.0mPD) CH124+254 to CH124+312 (7,699m³) | 18d | 2013-05-06 A | 2013-05-31 A | 823B-ERS-A6-ELS-1380 SS+7d | 100% | 2013-01-24 | 2013-02-16 | Bulk Excavation [7699 Cu m]; Excavation [7699 Cu m] | 7699 | 100% | 100% | 7699 | m3 | 7699 | 823B_AB |
| 823B-ERS-A6-ELS-1410 |  | Bulk excavation for 4th layer (5,133m³) | 12d | 2013-05-31 A | 2013-07-31 A | 823B-ERS-A6-ELS-1400, 823B-ERS-A6-ELS-1390 | 100% | 2013-02-18 | 2013-03-02 | Bulk Excavation [5133 Cu m]; Excavation [5133 Cu m] | 5133 | 100% | 100% | 5133 | m3 | 5133 | 823B_AB |
| 823B-ERS-A6-ELS-1430 |  | Bulk excavation to final layer (6,746m³) | 16d | 2013-06-01 A | 2013-08-21 A | 823B-ERS-A6-ELS-1420 | 100% | 2013-03-11 | 2013-03-28 | Bulk Excavation [6746 Cu m]; Excavation [6746 Cu m] | 6746 | 100% | 100% | 6746 | m3 | 6476 | 823B_AB |
| 823B-ERS-A6-ELS-1380 |  | S3 waling & strut | 16d | 2013-07-02 A | 2013-08-12 A | 823B-ERS-A6-ELS-1370 SS+8d | 100% | 2013-01-16 | 2013-02-02 |  |  | 100% | 100% |  |  |  | 823B_AB |
| 823B-ERS-A6-ELS-1400 |  | S4 waling & strut | 9d | 2013-07-22 A | 2013-07-29 A | 823B-ERS-A6-ELS-1390 SS+9d | 100% | 2013-02-04 | 2013-02-16 |  |  | 100% | 100% |  |  |  | 823B_AB |
| 823B-ERS-A6-ELS-1420 |  | S4 waling & strut | 6d | 2013-07-27 A | 2013-08-06 A | 823B-ERS-A6-ELS-1410 | 100% | 2013-03-04 | 2013-03-09 |  |  | 100% | 100% |  |  |  | 823B_AB |

| ID | WBS | Activity | Duration | Start | Finish | Predecessors | Complete | Planned start | Planned finish | Resources | user_text6 | user_text7 | 823B_As-built | user_text4 | user_integer1 | user_text1 | user_text5 |
| --- | --- | --- | --- | --- | --- | --- | --- | --- | --- | --- | --- | --- | --- | --- | --- | --- | --- |
|  | 3 | **Tunnel Structure** |  | 2013-03-11 | 2014-09-08 |  |  |  |  |  |  |  |  |  |  |  |  |
| 823B-ERS-A6-RT-1010 |  | Earth Mat @ Bay 31 to Bay 34 | 8d | 2013-03-11 A | 2013-03-19 A | 823B-ERS-A6-ELS-1210, 823B-ERS-A6-ELS-1320, 823B-ERS-CNP-0010 | 100% |  |  |  | 100% | 100% | 823B_AB |  |  |  |  |
| 823B-ERS-A6-RT-1510 |  | Earth Mat @ Bay 39 & 40 | 10d | 2013-04-02 A | 2013-04-13 A | 823B-ERS-A6-ELS-1430 | 100% |  |  |  | 100% | 100% | 823B_AB |  |  |  |  |
| 823B-ERS-A6-RT-1090 |  | Running Tunnel (Bay 32) - Pile head | 6d | 2013-06-01 A | 2013-06-07 A | 823B-ERS-A6-RT-1010 | 100% | 2013-03-20 | 2013-03-26 |  | 100% | 100% | 823B_AB |  |  |  |  |
| 823B-ERS-A6-RT-1100 |  | Running Tunnel (Bay 32) - Sump pit (359m³ conc) | 10d | 2013-06-08 A | 2013-07-20 A | 823B-ERS-A6-RT-1090, 823B-ERS-A6-RT-1090 FF | 100% | 2013-03-27 | 2013-04-11 | Concrete [359 Cu m]; Rebar [37 t] | 100% | 100% | 823B_AB | 359 | 359 | m3 | 359 |
| 823B-ERS-A6-RT-1160 |  | Running Tunnel (Bay 33) - Pile head | 6d | 2013-06-14 A | 2013-06-20 A | 823B-ERS-A6-RT-1010, 823B-ERS-A6-RT-1100 SS+4d | 100% | 2013-04-05 | 2013-04-11 |  | 100% | 100% | 823B_AB |  |  |  |  |
| 823B-ERS-A6-RT-1230 |  | Running Tunnel (Bay 34) - Pile head | 6d | 2013-06-14 A | 2013-06-20 A | 823B-ERS-A6-RT-1010, 823B-ERS-A6-RT-1160 | 100% | 2013-04-12 | 2013-04-18 |  | 100% | 100% | 823B_AB |  |  |  |  |
| 823B-ERS-A6-RT-1110 |  | Running Tunnel (Bay 32) - Base Slab (1,033m³ conc) | 18d | 2013-06-21 A | 2013-10-02 A | 823B-ERS-A6-RT-1100, 823B-ERS-A6-RT-1100 FF | 100% | 2013-04-12 | 2013-05-03 | Concrete [1033 Cu m]; Rebar [106 t] | 100% | 100% | 823B_AB | 1033 | 1033 | m3 | 1033 |
| 823B-ERS-A6-RT-1170 |  | Running Tunnel (Bay 33) - Sump pit (363m³) | 10d | 2013-06-21 A | 2013-07-23 A | 823B-ERS-A6-RT-1160 | 100% | 2013-04-12 | 2013-04-23 | Concrete [363 Cu m]; Rebar [37 t] | 100% | 100% | 823B_AB | 363 | 363 | m3 | 363 |
| 823B-ERS-A6-RT-1240 |  | Running Tunnel (Bay 34) - Base Slab (1,045m³ conc) | 18d | 2013-06-21 A | 2013-07-12 A | 823B-ERS-A6-RT-1230, 823B-ERS-A6-RT-1300 | 100% | 2013-04-19 | 2013-05-10 | Concrete [1045 Cu m]; Rebar [106 t] | 100% | 100% | 823B_AB | 1045 | 1045 | m3 | 1045 |
| 823B-ERS-A6-RT-1360 |  | Earth Mat @ Bay 36 & 37 | 6d | 2013-06-28 A | 2013-07-05 A | 823B-ERS-A6-RT-1290, 823B-ERS-A6-ELS-1320 | 100% | 2013-03-18 | 2013-03-23 |  | 100% | 100% | 823B_AB |  |  |  |  |
| 823B-ERS-A6-RT-1180 |  | Running Tunnel (Bay 33) - Base Slab (1,045m³ conc) | 18d | 2013-06-29 A | 2013-10-02 A | 823B-ERS-A6-RT-1170 | 100% | 2013-04-24 | 2013-05-15 | Concrete [1045 Cu m]; Rebar [106 t] | 100% | 100% | 823B_AB | 1045 | 1045 | m3 | 1045 |
| 823B-ERS-A6-RT-1290 |  | Running Tunnel (Bay 35) - Pile head | 6d | 2013-06-29 A | 2013-07-06 A | 823B-ERS-A6-ELS-1320 | 100% | 2013-03-11 | 2013-03-16 |  | 100% | 100% | 823B_AB |  |  |  |  |
| 823B-ERS-A6-RT-1070 |  | Running Tunnel (Bay 31) - Steel frame installation | 18d | 2013-07-02 A | 2014-09-04 A | 823B-ERS-A6-RT-1040, 823B-DP009-070, 823B-ERS-A5-RT-1260 | 100% | 2014-10-10 | 2014-10-30 |  | 100% | 100% | 823B_AB |  |  |  |  |
| 823B-ERS-A6-RT-1390 |  | Running Tunnel (Bay 37) - Base Slab (810m³ conc) | 11d | 2013-07-06 A | 2013-07-18 A | 823B-ERS-A6-RT-1360, 823B-ERS-A6-RT-1300 | 100% | 2013-04-08 | 2013-04-19 | Concrete [810 Cu m]; Rebar [1155 t] | 100% | 100% | 823B_AB | 810 | 810 | m3 | 810 |
| 823B-ERS-A6-RT-1080 |  | Running Tunnel (Bay 31) - Noise absorption panels | 6d | 2013-07-08 A | 2014-09-08 A | 823B-ERS-A6-RT-1070, 823B-ERS-A5-RT-1270 | 100% | 2014-11-06 | 2014-11-12 |  | 100% | 100% | 823B_AB |  |  |  |  |
| 823B-ERS-A6-RT-1300 |  | Running Tunnel (Bay 35) - Base Slab (482m³ conc) | 14d | 2013-07-08 A | 2013-07-23 A | 823B-ERS-A6-RT-1290 | 100% | 2013-03-18 | 2013-04-06 | Concrete [482 Cu m]; Rebar [63 t] | 100% | 100% | 823B_AB | 482 | 482 | m3 | 482 |
| 823B-ERS-A6-RT-1380 |  | Running Tunnel (Bay 36) - Stitch Joint (247m³ conc) | 14d | 2013-07-29 A | 2014-01-10 A | 823B-ERS-A6-RT-1360, 823B-ERS-A6-RT-1370 | 100% | 2013-07-08 | 2013-07-23 | Concrete [233 Cu m]; Backfilling [247 Cu m] | 100% | 100% | 823B_AB | 247 | 247 | m3 | 247 |
| 823B-ERS-A6-RT-1020 |  | Running Tunnel (Bay 31) - Pile head | 4d | 2013-08-01 A | 2013-08-05 A | 823B-ERS-A6-RT-1010 | 100% | 2013-03-20 | 2013-03-23 |  | 100% | 100% | 823B_AB |  |  |  |  |
| 823B-ERS-A6-RT-1400 |  | Running Tunnel (Bay 37) - Wall (538m³ conc) | 6d | 2013-08-01 A | 2013-08-29 A | 823B-ERS-A6-RT-1390 | 100% | 2013-04-20 | 2013-04-26 | Concrete [538 Cu m]; Rebar [72 t] | 100% | 100% | 823B_AB | 538 | 538 | m3 | 538 |
| 823B-ERS-A6-RT-1450 |  | Running Tunnel (Bay 38) - Base Slab (810m³) | 11d | 2013-08-01 A | 2013-08-16 A | 823B-ERS-A6-RT-1390 | 100% | 2013-04-20 | 2013-05-03 | Concrete [810 Cu m]; Rebar [106 t] | 100% | 100% | 823B_AB | 810 | 810 | m3 | 810 |
| 823B-ERS-A6-RT-1382 |  | Running Tunnel (Bay 36) - Mass concrete (invert & walkway) | 5d | 2013-08-03 A | 2013-08-08 A | 823B-ERS-A6-RT-1380 | 100% | 2013-07-24 | 2013-07-29 |  | 100% | 100% | 823B_AB |  |  |  |  |
| 823B-ERS-A6-RT-1030 |  | Running Tunnel (Bay 31) - WP+BS+Columns+Platform (513m³ conc) | 28d | 2013-08-06 A | 2013-09-11 A | 823B-ERS-A6-RT-1020 | 100% | 2013-03-25 | 2013-04-30 | Concrete [513 Cu m]; Rebar [68 t] | 100% | 100% | 823B_AB | 513 | 513 | m3 | 513 |
| 823B-ERS-A6-RT-1530 |  | Running Tunnel (Bay 41) - Wall (240m³ conc) | 6d | 2013-08-06 A | 2013-10-17 A | 823B-ERS-A6-RT-1520 | 100% | 2013-04-16 | 2013-04-22 | Concrete [240 Cu m]; Rebar [32 t] | 100% | 100% | 823B_AB | 240 | 240 | m3 | 240 |
| 823B-ERS-A6-RT-1630 |  | Running Tunnel (Bay 39) - Base Slab (829m³ conc) | 11d | 2013-08-16 A | 2013-08-28 A | 823B-ERS-A6-RT-1510, 823B-ERS-A6-RT-1570 | 100% | 2013-04-29 | 2013-05-11 | Concrete [839 Cu m]; Rebar [108 t] | 100% | 100% | 823B_AB | 829 | 829 | m3 | 829 |
| 823B-ERS-A6-RT-1250 |  | Running Tunnel (Bay 34) - Wall (423m³ conc) | 11d | 2013-09-02 A | 2013-10-19 A | 823B-ERS-A6-RT-1240 | 100% | 2013-05-11 | 2013-05-24 | Concrete [423 Cu m]; Rebar [43 t] | 100% | 100% | 823B_AB | 423 | 423 | m3 | 423 |
| 823B-ERS-A6-RT-1310 |  | Running Tunnel (Bay 35) - Wall (320m³ conc) | 8d | 2013-09-02 A | 2013-09-07 A | 823B-ERS-A6-RT-1300 | 100% | 2013-04-08 | 2013-04-16 | Concrete [320 Cu m]; Rebar [42 t] | 100% | 100% | 823B_AB | 320 | 320 | m3 | 320 |
| 823B-ERS-A6-RT-1460 |  | Running Tunnel (Bay 38) - Wall (269m³) | 6d | 2013-09-02 A | 2013-09-17 A | 823B-ERS-A6-RT-1450 | 100% | 2013-05-04 | 2013-05-10 | Concrete [269 Cu m]; Rebar [35 t] | 100% | 100% | 823B_AB | 269 | 269 | m3 | 269 |
| 823B-ERS-A6-RT-1520 |  | Running Tunnel (Bay 41) - Base Slab (725m³ conc) | 11d | 2013-09-02 A | 2013-09-05 A | 823B-ERS-A6-ELS-1430 | 100% | 2013-04-02 | 2013-04-15 | Concrete [725 Cu m]; Rebar [95 t] | 100% | 100% | 823B_AB | 725 | 725 | m3 | 725 |
| 823B-ERS-A6-RT-1570 |  | Running Tunnel (Bay 40) - Base Slab (810m³ conc) | 11d | 2013-09-02 A | 2013-09-10 A | 823B-ERS-A6-RT-1520, 823B-ERS-A6-RT-1510 | 100% | 2013-04-16 | 2013-04-27 | Concrete [810 Cu m]; Rebar [106 t] | 100% | 100% | 823B_AB | 810 | 810 | m3 | 810 |
| 823B-ERS-A6-RT-1320 |  | Running Tunnel (Bay 35) - Roof Slab (193m³ conc) | 14d | 2013-09-11 A | 2013-09-25 A | 823B-ERS-A6-RT-1310 | 100% | 2013-04-17 | 2013-05-03 | Concrete [193 Cu m]; Rebar [25 t] | 100% | 100% | 823B_AB | 193 | 193 | m3 | 193 |
| 823B-ERS-A6-RT-1410 |  | Running Tunnel (Bay 37) - Roof Slab (324m³ conc) | 7d | 2013-09-11 A | 2013-09-18 A | 823B-ERS-A6-RT-1400 | 100% | 2013-04-27 | 2013-05-06 | Concrete [324 Cu m]; Rebar [42 t] | 100% | 100% | 823B_AB | 324 | 324 | m3 | 324 |
| 823B-ERS-A6-RT-1120 |  | Running Tunnel (Bay 32) - Wall (419m³ conc) | 11d | 2013-09-12 A | 2013-10-10 A | 823B-ERS-A6-RT-1110, 823B-ERS-A6-RT-1110 FF | 100% | 2013-05-04 | 2013-05-16 | Concrete [419 Cu m]; Rebar [43 t] | 100% | 100% | 823B_AB | 419 | 419 | m3 | 419 |
| 823B-ERS-A6-RT-1502 |  | Running Tunnel (Bay 35, 37 & 38) - Mass concrete (invert & walkway) | 18d | 2013-09-12 A | 2013-10-03 A | 823B-ERS-A6-RT-1430, 823B-ERS-A6-RT-1490 SS+11d, 823B-ERS-A6-RT-1340 | 100% | 2013-06-10 | 2013-07-02 |  | 100% | 100% | 823B_AB |  |  |  |  |
| 823B-ERS-A6-RT-1040 |  | Running Tunnel (Bay 31) - Remove Strut S1, RB, KP | 6d | 2013-09-16 A | 2013-10-05 A | 823B-ERS-A6-RT-1030 | 100% | 2013-05-02 | 2013-05-08 |  | 100% | 100% | 823B_AB |  |  |  |  |
| 823B-ERS-A6-RT-1470 |  | Running Tunnel (Bay 38) - Roof Slab (324m³) | 7d | 2013-09-16 A | 2013-09-26 A | 823B-ERS-A6-RT-1460 | 100% | 2013-05-11 | 2013-05-20 | Concrete [324 Cu m]; Rebar [42 t] | 100% | 100% | 823B_AB | 324 | 324 | m3 | 324 |
| 823B-ERS-A6-RT-1580 |  | Running Tunnel (Bay 40) - Wall (269m³ conc) | 6d | 2013-09-16 A | 2013-10-02 A | 823B-ERS-A6-RT-1570 | 100% | 2013-04-29 | 2013-05-06 | Concrete [269 Cu m]; Rebar [35 t] | 100% | 100% | 823B_AB | 269 | 269 | m3 | 269 |
| 823B-ERS-A6-RT-1640 |  | Running Tunnel (Bay 39) - Wall (278m³ conc) | 6d | 2013-09-20 A | 2013-09-27 A | 823B-ERS-A6-RT-1630 | 100% | 2013-05-13 | 2013-05-20 | Concrete [278 Cu m]; Rebar [37 t] | 100% | 100% | 823B_AB | 278 | 278 | m3 | 278 |
| 823B-ERS-A6-RT-1682 |  | Running Tunnel (Bay 41 to 39) - Mass concrete (invert & walkway) | 18d | 2013-09-28 A | 2013-10-19 A | 823B-ERS-A6-RT-1560 SS, 823B-ERS-A6-RT-1670 SS+4d, 823B-ERS-A6-RT-1610 SS | 100% | 2013-06-10 | 2013-07-02 |  | 100% | 100% | 823B_AB |  |  |  |  |
| 823B-ERS-A6-RT-1060 |  | Running Tunnel (Bay 31) - Staircase (110m³ conc) | 28d | 2013-10-02 A | 2014-03-01 A | 823B-ERS-A6-RT-1030 | 100% | 2013-05-02 | 2013-06-04 | Concrete [110 Cu m] | 100% | 100% | 823B_AB | 110 | 110 | m3 | 110 |
| 823B-ERS-A6-RT-1330 |  | Running Tunnel (Bay 35) - Plenum (Wall) (78m³ conc) | 6d | 2013-10-02 A | 2013-10-19 A | 823B-ERS-A6-RT-1320, 823B-ERS-A6-RT-1240 SS+5d | 100% | 2013-05-04 | 2013-05-10 | Concrete [78 Cu m]; Rebar [10 t] | 100% | 100% | 823B_AB | 78 | 78 | m3 | 78 |
| 823B-ERS-A6-RT-1420 |  | Running Tunnel (Bay 37) - Plenum (Wall) (130m³ conc) | 6d | 2013-10-02 A | 2013-10-22 A | 823B-ERS-A6-RT-1410 | 100% | 2013-05-07 | 2013-05-13 | Concrete [130 Cu m]; Rebar [17 t] | 100% | 100% | 823B_AB | 130 | 130 | m3 | 130 |
| 823B-ERS-A6-RT-1480 |  | Running Tunnel (Bay 38) - Plenum (Wall) (130m³) | 6d | 2013-10-02 A | 2013-10-22 A | 823B-ERS-A6-RT-1470 | 100% | 2013-05-21 | 2013-05-27 | Concrete [130 Cu m]; Rebar [17 t] | 100% | 100% | 823B_AB | 130 | 130 | m3 | 130 |
| 823B-ERS-A6-RT-1650 |  | Running Tunnel (Bay 39) - Roof Slab (336m³ conc) | 7d | 2013-10-02 A | 2013-11-07 A | 823B-ERS-A6-RT-1640 | 100% | 2013-05-21 | 2013-05-28 | Concrete [336 Cu m]; Rebar [44 t] | 100% | 100% | 823B_AB | 336 | 336 | m3 | 336 |
| 823B-ERS-A6-RT-1260 |  | Running Tunnel (Bay 34) - Roof Slab (418m³ conc) | 31d | 2013-10-03 A | 2013-11-01 A | 823B-ERS-A6-RT-1250 | 100% | 2013-05-25 | 2013-07-02 | Concrete [418 Cu m]; Rebar [43 t] | 100% | 100% | 823B_AB | 418 | 418 | m3 | 418 |
| 823B-ERS-A6-RT-1590 |  | Running Tunnel (Bay 40) - Roof Slab (324m³ conc) | 7d | 2013-10-03 A | 2013-10-21 A | 823B-ERS-A6-RT-1580 | 100% | 2013-05-07 | 2013-05-14 | Concrete [324 Cu m]; Rebar [43 t] | 100% | 100% | 823B_AB | 324 | 324 | m3 | 324 |
| 823B-ERS-A6-RT-1050 |  | Running Tunnel (Bay 31) - Mass Concrete (invert & walkway) (94m³ conc) | 8d | 2013-10-07 A | 2013-11-01 A | 823B-ERS-A6-RT-1040 | 100% | 2013-05-09 | 2013-05-18 | Concrete [94 Cu m] | 100% | 100% | 823B_AB | 94 | 94 | m3 | 94 |
| 823B-ERS-A6-RT-1130 |  | Running Tunnel (Bay 32) - Roof Slab (413m³ conc) | 31d | 2013-10-11 A | 2013-11-09 A | 823B-ERS-A6-RT-1120 | 100% | 2013-05-18 | 2013-06-24 | Concrete [413 Cu m]; Rebar [43 t] | 100% | 100% | 823B_AB | 413 | 413 | m3 | 413 |
| 823B-ERS-A6-RT-1190 |  | Running Tunnel (Bay 33) - Wall (423m³ conc) | 11d | 2013-10-12 A | 2013-10-31 A | 823B-ERS-A6-RT-1180 | 100% | 2013-05-16 | 2013-05-29 | Concrete [423 Cu m]; Rebar [43 t] | 100% | 100% | 823B_AB | 423 | 423 | m3 | 423 |
| 823B-ERS-A6-RT-1540 |  | Running Tunnel (Bay 41) - Roof Slab (291m³ conc) | 7d | 2013-10-16 A | 2013-11-02 A | 823B-ERS-A6-RT-1530 | 100% | 2013-04-23 | 2013-04-30 | Concrete [291 Cu m]; Rebar [38 t] | 100% | 100% | 823B_AB | 291 | 291 | m3 | 291 |
| 823B-ERS-A6-RT-1340 |  | Running Tunnel (Bay 35) - Plenum (Roof) (482m³ conc) | 8d | 2013-10-22 A | 2013-12-02 A | 823B-ERS-A6-RT-1330 | 100% | 2013-05-11 | 2013-05-21 | Concrete [482 Cu m]; Rebar [63 t] | 100% | 100% | 823B_AB | 482 | 482 | m3 | 482 |
| 823B-ERS-A6-RT-1600 |  | Running Tunnel (Bay 40) - Plenum (Wall) (1,264m³ conc) | 6d | 2013-10-22 A | 2013-11-21 A | 823B-ERS-A6-RT-1590 | 100% | 2013-05-15 | 2013-05-22 | Concrete [130 Cu m]; Backfilling [1264 Cu m]; Rebar [18 t] | 100% | 100% | 823B_AB | 1264 | 1264 | m3 | 1264 |
| 823B-ERS-A6-RT-1200 |  | Running Tunnel (Bay 33) - Roof Slab (418m³ conc) | 31d | 2013-10-25 A | 2013-12-03 A | 823B-ERS-A6-RT-1190 | 100% | 2013-05-30 | 2013-07-06 | Concrete [418 Cu m]; Rebar [42 t] | 100% | 100% | 823B_AB | 418 | 418 | m3 | 418 |
| 823B-ERS-A6-RT-1430 |  | Running Tunnel (Bay 37) - Plenum (Roof) (810m³ conc) | 7d | 2013-11-01 A | 2013-11-08 A | 823B-ERS-A6-RT-1420 | 100% | 2013-05-14 | 2013-05-22 | Concrete [810 Cu m]; Rebar [106 t] | 100% | 100% | 823B_AB | 810 | 810 | m3 | 810 |
| 823B-ERS-A6-RT-1490 |  | Running Tunnel (Bay 38) - Plenum (Roof) (810m³) | 7d | 2013-11-01 A | 2013-12-11 A | 823B-ERS-A6-RT-1480 | 100% | 2013-05-28 | 2013-06-04 | Concrete [810 Cu m]; Rebar [23 t] | 100% | 100% | 823B_AB | 810 | 810 | m3 | 810 |
| 823B-ERS-A6-RT-1270 |  | Running Tunnel (Bay 34) - Column (187m³ conc) | 6d | 2013-11-02 A | 2014-04-01 A | 823B-ERS-A6-RT-1260 | 100% | 2013-07-03 | 2013-07-09 | Concrete [187 Cu m]; Rebar [21 t] | 100% | 100% | 823B_AB | 187 | 187 | m3 | 187 |
| 823B-ERS-A6-RT-1550 |  | Running Tunnel (Bay 41) - Plenum (Wall) (1,131m³ conc) | 6d | 2013-11-04 A | 2013-11-23 A | 823B-ERS-A6-RT-1540, 823B-ERS-A6-RT-1590 SS | 100% | 2013-05-07 | 2013-05-13 | Concrete [116 Cu m]; Backfilling [1131 Cu m]; Rebar [16 t] | 100% | 100% | 823B_AB | 1131 | 1131 | m3 | 1131 |
| 823B-ERS-A6-RT-1660 |  | Running Tunnel (Bay 39) - Plenum (Wall) (134m³ conc) | 6d | 2013-11-08 A | 2013-11-29 A | 823B-ERS-A6-RT-1650 | 100% | 2013-05-29 | 2013-06-04 | Concrete [134 Cu m]; Rebar [18 t] | 100% | 100% | 823B_AB | 134 | 134 | m3 | 134 |
| 823B-ERS-A6-RT-1140 |  | Running Tunnel (Bay 32) - Column (187m³ conc) | 6d | 2013-11-11 A | 2014-01-11 A | 823B-ERS-A6-RT-1130 | 100% | 2013-06-25 | 2013-07-02 | Concrete [187 Cu m]; Rebar [21 t] | 100% | 100% | 823B_AB | 187 | 187 | m3 | 187 |
| 823B-ERS-A6-RT-1210 |  | Running Tunnel (Bay 33) - Column (187m³ conc) | 6d | 2013-11-11 A | 2014-04-04 A | 823B-ERS-A6-RT-1200 | 100% | 2013-07-08 | 2013-07-13 | Concrete [187 Cu m]; Rebar [21 t] | 100% | 100% | 823B_AB | 187 | 187 | m3 | 187 |
| 823B-ERS-A6-RT-1610 |  | Running Tunnel (Bay 40) - Plenum (Roof) (810m³ conc) | 7d | 2013-11-22 A | 2013-12-09 A | 823B-ERS-A6-RT-1600 | 100% | 2013-05-23 | 2013-05-30 | Concrete [810 Cu m]; Rebar [106 t] | 100% | 100% | 823B_AB | 810 | 810 | m3 | 810 |
| 823B-ERS-A6-RT-1560 |  | Running Tunnel (Bay 41) - Plenum (Roof) (725m³ conc) | 7d | 2013-11-25 A | 2013-12-14 A | 823B-ERS-A6-RT-1550 | 100% | 2013-05-14 | 2013-05-22 | Concrete [725 Cu m]; Rebar [95 t] | 100% | 100% | 823B_AB | 725 | 725 | m3 | 725 |
| 823B-ERS-A6-RT-1670 |  | Running Tunnel (Bay 39) - Plenum (Roof) (839m³ conc) | 7d | 2013-11-30 A | 2013-12-17 A | 823B-ERS-A6-RT-1660 | 100% | 2013-06-05 | 2013-06-13 | Concrete [839 Cu m]; Rebar [109 t] | 100% | 100% | 823B_AB | 839 | 839 | m3 | 839 |
| 823B-ERS-A6-RT-1282 |  | Running Tunnel (Bay 32 to 34) - Mass concrete (invert & walkway) | 18d | 2013-12-06 A | 2014-01-13 A | 823B-ERS-A6-RT-1200, 823B-ERS-A6-RT-1260 SS, 823B-ERS-A6-RT-1320 | 100% | 2013-07-08 | 2013-07-27 |  | 100% | 100% | 823B_AB |  |  |  |  |
| 823B-ERS-A6-RT-1370 |  | Settlement Monitoring | 7d | 2014-01-02 A | 2014-01-09 A | 823B-ERS-A6-RT-1440, 823B-ERS-A6-RT-1500, 823B-ERS-A6-RT-1620, 823B-ERS-A6-RT-1680 | 100% | 2013-06-28 | 2013-07-06 |  | 100% | 100% | 823B_AB |  |  |  |  |
| 823B-ERS-A6-RT-1620 |  | Running Tunnel (Bay 40) - Backfilling (3,289m³ backfill) | 14d | 2014-01-02 A | 2014-06-07 A | 823B-ERS-A6-RT-1610 | 100% | 2013-05-31 | 2013-06-17 | Backfilling [3289 Cu m]; Concrete [813 Cu m] | 100% | 100% | 823B_AB | 3289 | 3289 | m3 | 3289 |
| 823B-ERS-A6-RT-1680 |  | Running Tunnel (Bay 39) - Backfilling (3,404m³ backfill) | 12d | 2014-01-02 A | 2014-06-06 A | 823B-ERS-A6-RT-1670 | 100% | 2013-06-14 | 2013-06-27 | Backfilling [3404 Cu m]; Concrete [444 Cu m] | 100% | 100% | 823B_AB | 3404 | 3404 | m3 | 3404 |
| 823B-ERS-A6-RT-1065 |  | Running Tunnel (Bay 31) - Cable bracket installation | 12d | 2014-01-11 A | 2014-01-22 A | 823B-ERS-A6-RT-1050 | 100% | 2013-05-20 | 2013-06-01 |  | 100% | 100% | 823B_AB |  |  |  |  |
| 823B-ERS-A6-RT-1150 |  | Running Tunnel (Bay 32) - Plenum (638m³ conc) | 8d | 2014-01-13 A | 2014-04-25 A | 823B-ERS-A6-RT-1140 | 100% | 2013-07-03 | 2013-07-11 | Concrete [638 Cu m]; Rebar [71 t] | 100% | 100% | 823B_AB | 638 | 638 | m3 | 638 |
| 823B-ERS-A6-RT-1350 |  | Running Tunnel (Bay 35 & 36) - Backfilling (2,190m³ backfill) | 10d | 2014-01-13 A | 2014-06-14 A | 823B-ERS-A6-RT-1340, 823B-ERS-A6-RT-1380 | 100% | 2013-07-24 | 2013-08-03 | Backfilling [2190 Cu m]; Concrete [285 Cu m] | 100% | 100% | 823B_AB | 2190 | 2190 | m3 | 2190 |

| ID | WBS | Activity | Duration | Start | Finish | Predecessors | Complete | Planned start | Planned finish | Resources | user_text4 | user_text6 | user_text7 | user_integer1 | user_text1 | user_text5 | 823B_As-built |
| --- | --- | --- | --- | --- | --- | --- | --- | --- | --- | --- | --- | --- | --- | --- | --- | --- | --- |
| 823B-ERS-A6-RT-1440 |  | Running Tunnel (Bay 37) - Backfilling (3,289m³ backfill) | 19d | 2014-01-13 A | 2014-06-10 A | 823B-ERS-A6-RT-1430 | 100% | 2013-05-23 | 2013-06-14 | Backfilling [3289 Cu m]; Concrete [479 Cu m] | 3289 | 100% | 100% | 3289 | m3 | 3289 | 823B_AB |
| 823B-ERS-A6-RT-1500 |  | Running Tunnel (Bay 38) - Backfilling (3,289m³ backfill) | 14d | 2014-01-13 A | 2014-06-07 A | 823B-ERS-A6-RT-1490 | 100% | 2013-06-05 | 2013-06-21 | Backfilling [3289 Cu m]; Concrete [429 Cu m] | 3289 | 100% | 100% | 3289 | m3 | 3289 | 823B_AB |
| 823B-ERS-A6-RT-1504 |  | Running Tunnel (Bay 35, 37 & 38) - Cable bracket installation | 18d | 2014-01-13 A | 2014-01-29 A | 823B-ERS-A6-RT-1502 SS+12d | 100% | 2013-06-25 | 2013-07-16 |  |  | 100% | 100% |  |  |  | 823B_AB |
| 823B-ERS-A6-RT-1684 |  | Running Tunnel (Bay 41 to 39) - Cable bracket installation | 18d | 2014-01-13 A | 2014-01-29 A | 823B-ERS-A6-RT-1682 SS+12d | 100% | 2013-06-25 | 2013-07-16 |  |  | 100% | 100% |  |  |  | 823B_AB |
| 823B-ERS-A6-RT-1384 |  | Running Tunnel (Bay 36) - Cable bracket instalation | 5d | 2014-01-29 A | 2014-02-03 A | 823B-ERS-A6-RT-1382 | 100% | 2013-07-30 | 2013-08-03 |  |  | 100% | 100% |  |  |  | 823B_AB |
| 823B-ERS-A6-RT-1284 |  | Running Tunnel (Bay 32 to 34) - Cable bracket installation | 18d | 2014-02-21 A | 2014-02-26 A | 823B-ERS-A6-RT-1150, 823B-ERS-A6-RT-1220 SS, 823B-ERS-A6-RT-1280 SS | 100% | 2013-07-15 | 2013-08-03 |  |  | 100% | 100% |  |  |  | 823B_AB |
| 823B-ERS-A6-RT-1280 |  | Running Tunnel (Bay 34) - Plenum (638m³ conc) | 8d | 2014-04-02 A | 2014-04-17 A | 823B-ERS-A6-RT-1270 | 100% | 2014-04-02 | 2014-04-11 | Concrete [638 Cu m]; Rebar [71 t] | 638 | 100% | 100% | 638 | m3 | 638 | 823B_AB |
| 823B-ERS-A6-RT-1220 |  | Running Tunnel (Bay 33) - Plenum (638m³ conc) | 8d | 2014-04-07 A | 2014-04-14 A | 823B-ERS-A6-RT-1210 | 100% | 2014-04-04 | 2014-04-14 | Concrete [638 Cu m]; Rebar [71 t] | 638 | 100% | 100% | 638 | m3 | 638 | 823B_AB |
|  | 4 | **Plant Building South** |  | 2014-04-15 | 2014-10-18 |  |  |  |  |  |  |  |  |  |  |  |  |
| 823B-ERS-A6-PBS-1010 |  | SPS Superstructure - Ground Level Slab (95m³ conc) | 8d | 2014-04-15 A | 2014-04-26 A | 823B-ERS-A6-RT-1280, 823B-ERS-A6-RT-1220, 823B-ERS-A6-RT-1150 | 100% |  |  | Concrete [95 Cu m]; Rebar [11 t] | 95 | 100% | 100% | 95 | m3 | 95 | 823B_AB |
| 823B-ERS-A6-PBS-1020 |  | SPS Superstructure - Gound Level Wall + Columns (135m³ conc) | 17d | 2014-04-28 A | 2014-08-04 A | 823B-ERS-A6-PBS-1010 | 100% | 2014-04-28 | 2014-05-19 | Concrete [135 Cu m]; Rebar [15 t] | 135 | 100% | 100% | 135 | m3 | 135 | 823B_AB |
| 823B-ERS-A6-PBS-1030 |  | SPS Superstructure - U1 Level Slab @ +21.2mPD (273m³ conc) | 17d | 2014-06-23 A | 2014-08-06 A | 823B-ERS-A6-PBS-1020 | 100% | 2014-06-23 | 2014-07-12 | Concrete [273 Cu m]; Rebar [30 t] | 273 | 100% | 100% | 273 | m3 | 273 | 823B_AB |
| 823B-ERS-A6-PBS-1040 |  | SPS Superstructure - U2 Level Wall (102m³ conc) | 22d | 2014-09-01 A | 2014-09-30 A | 823B-ERS-A6-PBS-1030 | 100% | 2014-09-01 | 2014-09-26 | Concrete [102 Cu m]; Rebar [12 t] | 102 | 100% | 100% | 102 | m3 | 102 | 823B_AB |
| 823B-ERS-A6-PBS-1050 |  | SPS Superstructure - U2 Level Slab @ +28.2mPD (176m³ conc) | 18d | 2014-09-17 A | 2014-10-18 A | 823B-ERS-A6-PBS-1040 | 100% | 2014-09-27 | 2014-10-20 | Concrete [176 Cu m]; Rebar [20 t] | 176 | 100% | 100% | 176 | m3 | 176 | 823B_AB |
|  | 5 | **ABWF Works** |  | 2014-09-01 | 2015-09-01 |  |  |  |  |  |  |  |  |  |  |  |  |
| 823B-ERS-A6-PBS-2000 |  | SPS - ABWF (Degree 1 completion- blockwork, wet trade, water tight, civil&bldg provision for DC, etc.) | 26d | 2014-09-01 A | 2014-12-01 A | 823B-ERS-A6-PBS-1040, 823B-ERS-A6-PBS-1030 SS+46d, 823B-PRO-1000 | 100% | 2014-09-27 | 2014-10-29 |  |  | 100% | 100% |  |  |  | 823B_AB |
| 823B-ERS-A6-PBS-3000 |  | SPS - ABWF (Degree 2 completion - permanent door frame, Wall, floor, ceiling to DC rooms, etc.) | 96d | 2014-10-25 A | 2015-02-13 A | 823B-ERS-A6-PBS-2000 | 100% | 2014-10-25 | 2015-02-17 |  |  | 100% | 100% |  |  |  | 823B_AB |
| 823B-ERS-A6-PBS-4000 |  | SPS - ABWF (Degree 3 completion - door ironmongery, signage, louvre, painting, tiling, etc.) | 48d | 2015-02-14 A | 2015-09-01 A | 823B-ERS-A6-PBS-3000 | 100% | 2015-02-14 | 2015-04-18 |  |  | 100% | 100% |  |  |  | 823B_AB |
|  | D | **RUNNING TUNNEL AND APPROACH TUNNEL** |  | 2011-02-14 | 2014-10-29 |  |  |  |  |  |  |  |  |  |  |  |  |
|  | 1 | **AREA 7 - CH124+313 to CH124+429** |  | 2011-02-14 | 2014-10-23 |  |  |  |  |  |  |  |  |  |  |  |  |
|  | 1 | **D-Wall Construction** |  | 2011-02-14 | 2012-09-14 |  |  |  |  |  |  |  |  |  |  |  |  |
| 823B-CC-A7-DW-1010 |  | D-wall construction completed (8,310m³ conc) | 472d | 2011-02-14 A | 2012-09-14 A | 823B-AC-0095, 823B-AC-0100, 823B-AC-0105, 823B-AC-0110, 823B-AC-0115, 823B-AC-0120, 823B-AC-0125, 823B-AC-0130, 823B-AC-0135, 823B-AC-0140, 823B-AC-0145, 823B-AC-0150, 823B-AC-0060, 823B-A-PWS-0240, 823B-A-PWS-0140, 823B-A-PWS-0150, 823B-A-PWS-0160, 823B-A-PWS-0170, 823B-A-TWS-0110, 823B-A-PWS-0430 | 100% |  |  | Concrete [8310 Cu m] | 8310 | 100% | 100% | 8310 | m3 | 8310 | 823B_AB |
|  | 2 | **ELS Works** |  | 2012-09-15 | 2013-08-21 |  |  |  |  |  |  |  |  |  |  |  |  |
| 823B-CC-A7-ELS-1010 |  | ELS Stage 1 (23,628m³) | 27d | 2012-09-15 A | 2012-10-18 A | 823B-CC-A7-DW-1010 | 100% |  |  | Bulk Excavation [23628 Cu m]; Excavation [23628 Cu m] | 23628 | 100% | 100% | 23628 | m3 | 23628 | 823B_AB |
| 823B-CC-A7-ELS-1020 |  | ELS Stage 2 (21,003m³) | 24d | 2012-09-27 A | 2012-10-27 A | 823B-CC-A7-ELS-1010 SS+10d | 100% |  |  | Bulk Excavation [21003 Cu m]; Excavation [21003 Cu m] | 21003 | 100% | 100% | 21003 | m3 | 21003 | 823B_AB |
| 823B-CC-A7-ELS-1030 |  | ELS Stage 3 (7,001m³) | 8d | 2012-11-16 A | 2012-11-24 A | 823B-CC-A7-ELS-1020 | 100% |  |  | Bulk Excavation [7001 Cu m]; Excavation [7001 Cu m] | 7001 | 100% | 100% | 7001 | m3 | 7001 | 823B_AB |
| 823B-CC-A7-ELS-1040 |  | ELS Stage 1 (5,250m³) | 6d | 2012-11-26 A | 2013-01-04 A | 823B-CC-A7-ELS-1030 | 100% | 2012-11-26 | 2012-12-01 | Bulk Excavation [5250 Cu m]; Excavation [5250 Cu m] | 5250 | 100% | 100% | 5250 | m3 | 5250 | 823B_AB |
| 823B-CC-A7-ELS-1050 |  | ELS Stage 4 (2,166m³) | 4d | 2013-01-05 A | 2013-01-07 A | 823B-CC-A9-ELS-1070, 823B-CC-A7-ELS-1040 | 100% | 2012-12-12 | 2012-12-15 | Bulk Excavation [2166 Cu m]; Excavation [2166 Cu m] | 2166 | 100% | 100% | 2166 | m3 | 2166 | 823B_AB |
| 823B-CC-A7-ELS-1060 |  | ELS Stage 5 (8,666m³) | 16d | 2013-01-08 A | 2013-02-02 A | 823B-CC-A9-ELS-1080, 823B-CC-A7-ELS-1050 | 100% | 2012-12-28 | 2013-01-16 | Bulk Excavation [8666 Cu m]; Excavation [8666 Cu m] | 8666 | 100% | 100% | 8666 | m3 | 8666 | 823B_AB |
| 823B-CC-A7-ELS-1070 |  | ELS Stage 6 (16,248m³) | 30d | 2013-02-04 A | 2013-05-25 A | 823B-CC-A7-ELS-1060 SS+7d | 100% | 2013-01-07 | 2013-02-09 | Bulk Excavation [16248 Cu m]; Excavation [16248 Cu m] | 16248 | 100% | 100% | 16248 | m3 | 16248 | 823B_AB |
| 823B-CC-A7-ELS-1080 |  | ELS Stage 7 (8,124m³) | 15d | 2013-05-27 A | 2013-07-31 A | 823B-CC-A7-ELS-1070 | 100% | 2013-02-14 | 2013-03-02 | Bulk Excavation [8124 Cu m]; Excavation [8124 Cu m] | 8124 | 100% | 100% | 8124 | m3 | 8124 | 823B_AB |
| 823B-CC-A7-ELS-1090 |  | ELS up to Final Level (6,500m³) | 12d | 2013-06-19 A | 2013-08-21 A | 823B-CC-A7-ELS-1080 | 100% | 2013-03-04 | 2013-03-16 | Bulk Excavation [6500 Cu m]; Excavation [6500 Cu m] | 6500 | 100% | 100% | 6500 | m3 | 6500 | 823B_AB |

| ID | WBS | Activity | Duration | Start | Finish | Predecessors | Complete | Planned start | Planned finish | Resources | user_text4 | user_text6 | user_text7 | user_integer1 | user_text1 | user_text5 | 823B_As-built | Time Gain / Loss |
| --- | --- | --- | --- | --- | --- | --- | --- | --- | --- | --- | --- | --- | --- | --- | --- | --- | --- | --- |
|  | 3 | **Tunnel Structure** |  | 2013-02-18 | 2014-10-23 |  |  |  |  |  |  |  |  |  |  |  |  |  |
| 823B-CC-A7-RT-1370 |  | Approach Tunnel (Bay RT6) - Intermediate Wall (1,432m³ conc) | 24d | 2013-02-18 A | 2014-03-06 A | 823B-CC-A7-RT-1360 FS+6d | 100% | 2013-05-13 | 2013-06-10 | Concrete [1432 Cu m]; Rebar [153 t] | 1432 | 100% | 100% | 1432 | m3 | 1432 | 823B_AB |  |
| 823B-CC-A7-RT-1330 |  | Tower Crane Construction | 8d | 2013-03-04 A | 2013-03-12 A | 823B-CC-A7-ELS-1080 | 100% |  |  |  |  | 100% | 100% |  |  |  | 823B_AB |  |
| 823B-CC-A7-RT-1340 |  | Running Tunnel (Bay RT6) - Base Slab (1,232m³ conc) | 9d | 2013-06-22 A | 2013-07-03 A | 823B-CC-A7-RT-1330 | 100% | 2013-03-13 | 2013-03-22 | Concrete [1232 Cu m]; Rebar [161 t] | 1232 | 100% | 100% | 1232 | m3 | 1232 | 823B_AB |  |
| 823B-CC-A7-RT-1010 |  | Earth Mat @ Bay RT3 & RT4 (Type D) | 10d | 2013-06-29 A | 2013-07-11 A | 823B-CC-A7-ELS-1090 | 100% | 2013-03-18 | 2013-03-28 |  |  | 100% | 100% |  |  |  | 823B_AB |  |
| 823B-CC-A7-RT-1350 |  | Running Tunnel (Bay RT6) - Wall (657m³ conc) | 9d | 2013-07-04 A | 2013-08-21 A | 823B-CC-A7-RT-1340 | 100% | 2013-03-23 | 2013-04-06 | Concrete [657 Cu m]; Backfilling [2029 Cu m]; Rebar [86 t] | 657 | 100% | 100% | 657 | m3 | 657 | 823B_AB |  |
| 823B-CC-A7-RT-1270 |  | Running Tunnel (Bay RT5) - Base Slab (1,232m³ conc) | 9d | 2013-07-06 A | 2013-07-16 A | 823B-CC-A7-RT-1210 | 100% | 2013-04-25 | 2013-05-06 | Concrete [1232 Cu m]; Rebar [161 t] | 1232 | 100% | 100% | 1232 | m3 | 1232 | 823B_AB |  |
| 823B-CC-A7-RT-1210 |  | Running Tunnel (Bay RT4) - Base Slab (1,232m³ conc) | 9d | 2013-07-23 A | 2013-08-01 A | 823B-CC-A7-RT-1120 | 100% | 2013-04-15 | 2013-04-24 | Concrete [1232 Cu m]; Rebar [161 t] | 1232 | 100% | 100% | 1232 | m3 | 1232 | 823B_AB |  |
| 823B-CC-A7-RT-1232 |  | Cross Passage (CP30 @ Bay RT4) - Base Slab | 6d | 2013-07-26 A | 2013-08-01 A | 823B-CC-A7-RT-1210 | 100% | 2013-04-25 | 2013-05-02 |  |  | 100% | 100% |  |  |  | 823B_AB |  |
| 823B-CC-A7-RT-1220 |  | Running Tunnel (Bay RT4) - Wall (657m³ conc) | 8d | 2013-08-02 A | 2013-10-02 A | 823B-CC-A7-RT-1210 | 100% | 2013-04-25 | 2013-05-04 | Concrete [657 Cu m]; Backfilling [2134 Cu m]; Rebar [85 t] | 657 | 100% | 100% | 657 | m3 | 657 | 823B_AB |  |
| 823B-CC-A7-RT-1120 |  | Running Tunnel (Bay RT3) - Base Slab (622m³ conc) | 10d | 2013-08-08 A | 2013-08-19 A | 823B-CC-A7-RT-1010, 823B-CC-A7-RT-1040 | 100% | 2013-04-02 | 2013-04-13 | Concrete [622 Cu m]; Rebar [81 t] | 622 | 100% | 100% | 622 | m3 | 622 | 823B_AB |  |
| 823B-CC-A7-RT-1400 |  | Tower Crane Dismantle | 12d | 2013-08-14 A | 2013-08-27 A | 823B-CC-A7-RT-1380 | 100% |  |  |  |  | 100% | 100% |  |  |  | 823B_AB |  |
| 823B-CC-A7-RT-1040 |  | Running Tunnel (Bay RT2) - Base Slab (670m³ conc) | 10d | 2013-08-20 A | 2013-09-04 A | 823B-CC-A7-RT-1010 SS, 823B-CC-A7-ELS-1090 | 100% | 2013-03-18 | 2013-03-28 | Concrete [670 Cu m]; Rebar [87 t] | 670 | 100% | 100% | 670 | m3 | 670 | 823B_AB |  |
| 823B-CC-A7-RT-1280 |  | Running Tunnel (Bay RT5) - Wall (657m³ conc) | 8d | 2013-08-22 A | 2013-09-06 A | 823B-CC-A7-RT-1270 | 100% | 2013-05-07 | 2013-05-15 | Concrete [657 Cu m]; Backfilling [2134 Cu m]; Rebar [86 t] | 657 | 100% | 100% | 657 | m3 | 657 | 823B_AB |  |
| 823B-CC-A7-RT-1130 |  | Running Tunnel (Bay RT3) - Wall (658m³ conc) | 6d | 2013-09-02 A | 2013-10-10 A | 823B-CC-A7-RT-1120 | 100% | 2013-04-15 | 2013-04-20 | Concrete [658 Cu m]; Backfilling [4018 Cu m]; Rebar [86 t] | 658 | 100% | 100% | 658 | m3 | 658 | 823B_AB |  |
| 823B-CC-A7-RT-1360 |  | Running Tunnel (Bay RT6) - Roof (396m³ conc) | 23d | 2013-09-02 A | 2013-09-07 A | 823B-CC-A7-RT-1350 | 100% | 2013-04-08 | 2013-05-04 | Concrete [396 Cu m]; Backfilling [1865 Cu m]; Rebar [52 t] | 396 | 100% | 100% | 396 | m3 | 396 | 823B_AB |  |
| 823B-CC-A7-RT-1230 |  | Running Tunnel (Bay RT4) - Roof (396m³ conc) | 23d | 2013-09-07 A | 2013-10-11 A | 823B-CC-A7-RT-1220 | 100% | 2013-05-06 | 2013-06-01 | Concrete [396 Cu m]; Backfilling [2574 Cu m]; Rebar [52 t] | 396 | 100% | 100% | 396 | m3 | 396 | 823B_AB |  |
| 823B-CC-A7-RT-1290 |  | Running Tunnel (Bay RT5) - Roof (396m³ conc) | 23d | 2013-09-09 A | 2013-09-17 A | 823B-CC-A7-RT-1280, 823B-CC-A7-RT-1230 SS+6d | 100% | 2013-05-16 | 2013-06-13 | Backfilling [2043 Cu m]; Concrete [396 Cu m]; Rebar [52 t] | 396 | 100% | 100% | 396 | m3 | 396 | 823B_AB |  |
| 823B-CC-A7-RT-1050 |  | Running Tunnel (Bay RT2) - Wall (600m³ conc) | 10d | 2013-10-02 A | 2013-10-21 A | 823B-CC-A7-RT-1040 | 100% | 2013-04-02 | 2013-04-13 | Concrete [600 Cu m]; Backfilling [1499 Cu m]; Rebar [78 t] | 600 | 100% | 100% | 600 | m3 | 600 | 823B_AB |  |
| 823B-CC-A7-RT-1234 |  | Cross Passage (CP30 @ Bay RT4) - Wall | 6d | 2013-10-02 A | 2013-10-08 A | 823B-CC-A7-RT-1232, 823B-CC-A7-RT-1220 | 100% | 2013-05-06 | 2013-05-11 |  |  | 100% | 100% |  |  |  | 823B_AB |  |
| 823B-CC-A7-RT-1140 |  | Running Tunnel (Bay RT3) - Roof (373m³ conc) | 23d | 2013-10-07 A | 2013-11-01 A | 823B-CC-A7-RT-1130 SS+23d | 100% | 2013-05-13 | 2013-06-08 | Concrete [373 Cu m]; Rebar [49 t] | 373 | 100% | 100% | 373 | m3 | 373 | 823B_AB |  |
| 823B-CC-A7-RT-1236 |  | Cross Passage (CP30 @ Bay RT4) - Roof | 12d | 2013-10-09 A | 2013-10-22 A | 823B-CC-A7-RT-1234, 823B-CC-A7-RT-1230 | 100% | 2013-06-03 | 2013-06-17 |  |  | 100% | 100% |  |  |  | 823B_AB |  |
| 823B-CC-A7-RT-1060 |  | Running Tunnel (Bay RT2) - Roof (279m³ conc) | 23d | 2013-10-17 A | 2013-11-04 A | 823B-CC-A7-RT-1050 | 100% | 2013-04-15 | 2013-05-11 | Concrete [279 Cu m]; Rebar [37 t] | 279 | 100% | 100% | 279 | m3 | 279 | 823B_AB |  |
| 823B-CC-A7-RT-1321 |  | Running Tunnel (Bay RT2 to RT5) - Mass concrete (invert & walkway) | 18d | 2013-11-04 A | 2013-11-29 A | 823B-CC-A7-RT-1090, 823B-CC-A7-RT-1150 SS+10d, 823B-CC-A7-RT-1230, 823B-CC-A7-RT-1290 | 100% | 2013-06-29 | 2013-07-20 |  |  | 100% | 100% |  |  |  | 823B_AB |  |
| 823B-CC-A7-RT-1322 |  | Running Tunnel (Bay RT2 to RT5) - Cable bracket installation | 18d | 2013-11-23 A | 2013-12-06 A | 823B-CC-A7-RT-1321 SS+12d | 100% | 2013-07-15 | 2013-08-03 |  |  | 100% | 100% |  |  |  | 823B_AB |  |
| 823B-CC-A7-RT-1070 |  | Running Tunnel (Bay RT2) - Plenum (Wall) (289m³ conc) | 6d | 2013-12-02 A | 2013-12-07 A | 823B-CC-A7-RT-1060 | 100% | 2013-05-13 | 2013-05-20 | Concrete [289 Cu m]; Backfilling [603 Cu m]; Rebar [38 t] | 289 | 100% | 100% | 289 | m3 | 289 | 823B_AB |  |
| 823B-CC-A7-RT-1401 |  | Running Tunnel (Bay RT6) - Mass concrete (invert & walkway) | 6d | 2013-12-02 A | 2013-12-07 A | 823B-CC-A7-RT-1360, 823B-CC-A7-RT-1380 SS+15d | 100% | 2013-06-29 | 2013-07-06 |  |  | 100% | 100% |  |  |  | 823B_AB |  |
| 823B-CC-A7-RT-1402 |  | Running Tunnel (Bay RT6) - Cable bracket installation | 6d | 2013-12-02 A | 2013-12-07 A | 823B-CC-A7-RT-1401 SS+12d | 100% | 2013-07-15 | 2013-07-20 |  |  | 100% | 100% |  |  |  | 823B_AB |  |
| 823B-CC-A7-RT-1080 |  | Running Tunnel (Bay RT2) - Plenum (Roof) (670m³ conc) | 8d | 2013-12-09 A | 2013-12-17 A | 823B-CC-A7-RT-1070 | 100% | 2013-05-21 | 2013-05-29 | Rebar [87 t]; Concrete [670 Cu m] | 670 | 100% | 100% | 670 | m3 | 670 | 823B_AB |  |
| 823B-CC-A7-RT-1090 |  | Running Tunnel (Bay RT2) - Backfilling (2,608m³ backfill) | 19d | 2014-03-01 A | 2014-03-22 A | 823B-CC-A7-RT-1080 | 100% |  |  | Backfilling [2608 Cu m]; Concrete [235 Cu m] | 2608 | 100% | 100% | 2608 | m3 | 2608 | 823B_AB |  |
| 823B-CC-A7-RT-1150 |  | Running Tunnel (Bay RT3) - Backfilling (4,632m³ backfill) | 19d | 2014-03-01 A | 2014-03-22 A | 823B-CC-A7-RT-1140 FS+6d | 100% |  |  | Backfilling [4632 Cu m]; Concrete [235 Cu m] | 4632 | 100% | 100% | 4632 | m3 | 4632 | 823B_AB |  |
| 823B-CC-A7-RT-1240 |  | Approach Tunnel (Bay RT4) - Intermediate Wall (1,346m³ conc) | 22d | 2014-03-01 A | 2014-03-27 A | 823B-CC-A7-RT-1230 FS+6d, 823B-CC-A7-RT-1140 SS | 100% | 2014-03-01 | 2014-03-26 | Concrete [1346 Cu m]; Rebar [141 t] | 1346 | 100% | 100% | 1346 | m3 | 1346 | 823B_AB |  |
| 823B-CC-A7-RT-1300 |  | Approach Tunnel (Bay RT5) - Intermediate Wall (1,346m³ conc) | 24d | 2014-03-01 A | 2014-03-11 A | 823B-CC-A7-RT-1290 FS+6d | 100% | 2014-03-01 | 2014-03-28 | Concrete [1346 Cu m]; Rebar [142 t] | 1346 | 100% | 100% | 1346 | m3 | 1346 | 823B_AB |  |
| 823B-CC-A7-RT-1160 |  | Settlement Monitoring (Bay RT2 & RT3) | 7d | 2014-03-24 A | 2014-03-31 A | 823B-CC-A7-RT-1150, 823B-CC-A7-RT-1090 | 100% |  |  |  |  | 100% | 100% |  |  |  | 823B_AB |  |
| 823B-CC-A7-RT-1020 |  | Stitch Joint (Bay RT1) - Structure (532m³ conc) | 14d | 2014-04-01 A | 2014-04-24 A | 823B-CC-A7-RT-1160, 823B-ERS-A6-RT-1560 | 100% | 2014-04-01 | 2014-04-17 | Concrete [532 Cu m]; Backfilling [703 Cu m]; Rebar [61 t] | 532 | 100% | 100% | 532 | m3 | 532 | 823B_AB |  |
| 823B-CC-A7-RT-1380 |  | Approach Tunnel (Bay RT6) - Structure (1,443m³ conc) | 53d | 2014-04-01 A | 2014-08-13 A | 823B-CC-A7-RT-1370 | 100% | 2014-04-01 | 2014-06-09 | Concrete [1443 Cu m]; Rebar [188 t] | 1443 | 100% | 100% | 1443 | m3 | 1443 | 823B_AB |  |
| 823B-CC-A7-RT-1024 |  | Stitch Joint (Bay RT1) - Mass concrete (invert & walkway) | 6d | 2014-04-08 A | 2014-04-14 A | 823B-CC-A7-RT-1020 SS+8d | 100% | 2014-04-11 | 2014-04-17 |  |  | 100% | 100% |  |  |  | 823B_AB |  |
| 823B-CC-A7-RT-1026 |  | Stitch Joint (Bay RT1) - Cable bracket installation | 6d | 2014-04-24 A | 2014-04-30 A | 823B-CC-A7-RT-1024 SS | 100% | 2014-04-11 | 2014-04-17 |  |  | 100% | 100% |  |  |  | 823B_AB |  |
| 823B-CC-A7-RT-1030 |  | Stitch Joint (Bay RT1) - Backfillling (2,993m³ backfill) | 14d | 2014-05-02 A | 2014-06-16 A | 823B-CC-A7-RT-1020 | 100% | 2014-05-02 | 2014-05-19 | Backfilling [2993 Cu m] | 2993 | 100% | 100% | 2993 | m3 | 2993 | 823B_AB |  |
| 823B-CC-A7-RT-1170 |  | Trim ground to Approach Slab level | 12d | 2014-05-02 A | 2014-05-16 A | 823B-CC-A7-RT-1160 | 100% |  |  |  |  | 100% | 100% |  |  |  | 823B_AB | -22 |
| 823B-CC-A7-RT-1250 |  | Approach Tunnel (Bay RT4) - Structure (721m³ conc) | 54d | 2014-05-02 A | 2014-08-01 A | 823B-CC-A7-RT-1240 | 100% | 2014-05-02 | 2014-07-07 | Concrete [721 Cu m]; Rebar [94 t] | 721 | 100% | 100% | 721 | m3 | 721 | 823B_AB |  |
| 823B-CC-A7-RT-1310 |  | Approach Tunnel (Bay RT5) - Structure (1,015m³ conc) | 53d | 2014-05-02 A | 2014-08-07 A | 823B-CC-A7-RT-1300 | 100% | 2014-05-02 | 2014-07-05 | Concrete [1015 Cu m]; Rebar [132 t] | 1015 | 100% | 100% | 1015 | m3 | 1015 | 823B_AB |  |
| 823B-CC-A7-RT-1180 |  | Approach Tunnel (Bay RT3) - Approach Slab (843m³ conc) | 18d | 2014-05-17 A | 2014-08-05 A | 823B-CC-A7-RT-1170 | 100% | 2014-05-17 | 2014-06-07 | Concrete [843 Cu m]; Rebar [74 t] | 843 | 100% | 100% | 843 | m3 | 657 | 823B_AB |  |
| 823B-CC-A7-RT-1327 |  | Approach Tunnel (Bay RT3 to RT5) - Mass concrete (invert & walkway) | 18d | 2014-05-29 A | 2014-08-13 A | 823B-CC-A7-RT-1180, 823B-CC-A7-RT-1250 SS+46d, 823B-CC-A7-RT-1310 SS | 100% | 2014-06-27 | 2014-07-18 |  |  | 100% | 100% |  |  |  | 823B_AB |  |
| 823B-CC-A7-RT-1110 |  | Approach Tunnel (Bay RT2) - Backfilling (325m³ backfill) | 6d | 2014-06-03 A | 2014-06-09 A | 823B-CC-A7-RT-1190 | 100% | 2014-07-12 | 2014-07-18 | Backfilling [325 Cu m] | 325 | 100% | 100% | 325 | m3 | 325 | 823B_AB |  |
| 823B-CC-A7-RT-1190 |  | Approach Tunnel (Bay RT3) - Backfilling (626m³ backfill) | 6d | 2014-06-03 A | 2014-06-09 A | 823B-CC-A7-RT-1100 | 100% | 2014-07-05 | 2014-07-11 | Concrete [581 Cu m]; Backfilling [626 Cu m] | 626 | 100% | 100% | 626 | m3 | 626 | 823B_AB |  |
| 823B-CC-A7-RT-1404 |  | Approach Tunnel (Bay RT6) - Mass concrete (invert & walkway) | 6d | 2014-06-03 A | 2014-07-31 A | 823B-CC-A7-RT-1390 SS+14d | 100% | 2014-07-08 | 2014-07-14 |  |  | 100% | 100% |  |  |  | 823B_AB |  |
| 823B-CC-A7-RT-1100 |  | Approach Tunnel (Bay RT2) - Approach Slab (774m³ conc) | 18d | 2014-06-13 A | 2014-08-06 A | 823B-CC-A7-RT-1080, 823B-CC-A7-RT-1180 | 100% | 2014-06-13 | 2014-07-04 | Concrete [774 Cu m]; Rebar [71 t] | 774 | 100% | 100% | 774 | m3 | 247 | 823B_AB |  |
| 823B-CC-A7-RT-1320 |  | Approach Tunnel (Bay RT5) - Backfilling (3,398m³ backfill) | 12d | 2014-06-23 A | 2014-09-01 A | 823B-CC-A7-RT-1310 | 100% | 2014-06-23 | 2014-07-07 | Backfilling [3398 Cu m]; Concrete [256 Cu m] | 3398 | 100% | 100% | 3398 | m3 | 3398 | 823B_AB |  |
| 823B-CC-A7-RT-1260 |  | Approach Tunnel (Bay RT4) - Backfilling (2,627m³ backfill) | 22d | 2014-06-26 A | 2014-09-01 A | 823B-CC-A7-RT-1250 | 100% | 2014-06-26 | 2014-07-22 | Backfilling [2627 Cu m]; Concrete [256 Cu m] | 2627 | 100% | 100% | 627 | m3 | 2627 | 823B_AB |  |
| 823B-CC-A7-RT-1324 |  | Approach Tunnel (Bay RT2) - Mass concrete (invert & walkway) | 6d | 2014-07-04 A | 2014-08-15 A | 823B-CC-A7-RT-1110 SS | 100% | 2014-07-21 | 2014-07-26 |  |  | 100% | 100% |  |  |  | 823B_AB |  |
| 823B-CC-A7-RT-1390 |  | Approach Tunnel (Bay RT6) - Backfilling (3,408m³ backfill) | 28d | 2014-07-05 A | 2014-09-01 A | 823B-CC-A7-RT-1380 | 100% | 2014-07-05 | 2014-08-06 | Backfilling [3408 Cu m]; Concrete [256 Cu m] | 3408 | 100% | 100% | 3408 | m3 | 3408 | 823B_AB |  |
| 823B-CC-A7-RT-1200 |  | Approach Tunnel - Transition Slab (380m³ conc) | 12d | 2014-07-18 A | 2014-07-31 A | 823B-CC-A7-RT-1190 | 100% | 2014-07-21 | 2014-08-02 | Backfilling [380 Cu m]; Rebar [50 t] | 380 | 100% | 100% | 380 | m3 | 380 | 823B_AB |  |
| 823B-CC-A7-RT-1325 |  | Approach Tunnel (Bay RT2) - Cable bracket installation | 6d | 2014-10-03 A | 2014-10-09 A | 823B-CC-A7-RT-1324 | 100% |  |  |  |  | 100% | 100% |  |  |  | 823B_AB |  |
| 823B-CC-A7-RT-1328 |  | Approach Tunnel (Bay RT3 to RT5) - Cable bracket installation | 18d | 2014-10-03 A | 2014-10-23 A | 823B-CC-A7-RT-1327 SS+12d | 100% |  |  |  |  | 100% | 100% |  |  |  | 823B_AB |  |
| 823B-CC-A7-RT-1405 |  | Approach Tunnel (Bay RT6) - Cable bracket installation | 6d | 2014-10-03 A | 2014-10-09 A | 823B-CC-A7-RT-1404 SS+12d | 100% |  |  |  |  | 100% | 100% |  |  |  | 823B_AB |  |

| ID | WBS | Activity | Duration | Start | Finish | Predecessors | Complete | Planned start | Planned finish | Resources | user_text4 | user_text6 | user_text7 | user_integer1 | user_text1 | user_text5 | 823B_As-built |
| --- | --- | --- | --- | --- | --- | --- | --- | --- | --- | --- | --- | --- | --- | --- | --- | --- | --- |
|  | 2 | **AREA 9 - CH124+429 to CH124+549** |  | 2011-03-02 | 2014-10-25 |  |  |  |  |  |  |  |  |  |  |  |  |
|  | 1 | **D-Wall Construction** |  | 2011-03-02 | 2012-04-12 |  |  |  |  |  |  |  |  |  |  |  |  |
| 823B-CC-A9-DW-1010 |  | D-wall construction completed (15,720m³ conc) | 329d | 2011-03-02 A | 2012-04-12 A | 823B-AC-0150, 823B-AC-0060, 823B-AC-0095, 823B-AC-0100, 823B-AC-0105, 823B-AC-0110, 823B-AC-0115, 823B-AC-0120, 823B-AC-0125, 823B-AC-0130, 823B-AC-0135, 823B-AC-0140, 823B-AC-0145, 823B-A-PWS-0240, 823B-A-PWS-0140, 823B-A-PWS-0150, 823B-A-PWS-0160, 823B-A-PWS-0170, 823B-A-TWS-0110, 823B-A-PWS-0430 | 100% |  |  | Concrete [15720 Cu m] | 15720 | 100% | 100% | 15720 | m3 | 15720 | 823B_AB |
|  | 2 | **ELS Works** |  | 2012-04-13 | 2013-06-27 |  |  |  |  |  |  |  |  |  |  |  |  |
| 823B-CC-A9-ELS-1010 |  | ELS Stage 1 (11,571m³) | 54d | 2012-04-13 A | 2012-06-16 A | 823B-CC-A9-DW-1010 | 100% |  |  | Bulk Excavation [11571 Cu m]; Excavation [11571 Cu m] | 11571 | 100% | 100% | 11571 | m3 | 11571 | 823B_AB |
| 823B-CC-A9-ELS-1020 |  | ELS Stage 1 (11,571m³) | 54d | 2012-06-18 A | 2012-08-21 A | 823B-CC-A9-ELS-1010 | 100% |  |  | Bulk Excavation [11571 Cu m]; Excavation [11571 Cu m] | 11571 | 100% | 100% | 11571 | m3 | 11571 | 823B_AB |
| 823B-CC-A9-ELS-1030 |  | ELS Stage 2 (11,785m³) | 55d | 2012-07-03 A | 2012-09-04 A | 823B-CC-A9-ELS-1020 SS+11d | 100% |  |  | Bulk Excavation [11785 Cu m]; Excavation [11785 Cu m] | 11785 | 100% | 100% | 11785 | m3 | 11785 | 823B_AB |
| 823B-CC-A9-ELS-1040 |  | ELS Stage 3 (8,571m³) | 40d | 2012-08-31 A | 2012-10-18 A | 823B-CC-A9-ELS-1030 SS+62d | 100% |  |  | Bulk Excavation [8571 Cu m]; Excavation [8571 Cu m] | 8571 | 100% | 100% | 8571 | m3 | 8571 | 823B_AB |
| 823B-CC-A9-ELS-1050 |  | ELS Stage 3 (6,643m³) | 31d | 2012-10-19 A | 2012-11-24 A | 823B-CC-A9-ELS-1040 | 100% |  |  | Bulk Excavation [6643 Cu m]; Excavation [6643 Cu m] | 6643 | 100% | 100% | 6643 | m3 | 6643 | 823B_AB |
| 823B-CC-A9-ELS-1060 |  | ELS Stage 4 (8,785m³) | 6d | 2012-11-26 A | 2012-12-04 A | 823B-CC-A9-ELS-1040 SS, 823B-CC-A9-ELS-1050 SS | 100% | 2012-11-26 | 2012-12-01 | Bulk Excavation [8785 Cu m]; Excavation [8785 Cu m] | 8785 | 100% | 100% | 8785 | m3 | 8785 | 823B_AB |
| 823B-CC-A9-ELS-1070 |  | ELS Stage 5 (7,351m³) | 8d | 2012-12-05 A | 2013-01-05 A | 823B-CC-A9-ELS-1060 | 100% | 2012-12-03 | 2012-12-11 | Bulk Excavation [7351 Cu m]; Excavation [7351 Cu m] | 7351 | 100% | 100% | 7351 | m3 | 7351 | 823B_AB |
| 823B-CC-A9-ELS-1080 |  | ELS Stage 6 (12,864m³) | 14d | 2013-01-07 A | 2013-02-26 A | 823B-CC-A9-ELS-1070 SS+6d | 100% | 2012-12-10 | 2012-12-27 | Bulk Excavation [12864 Cu m]; Excavation [12864 Cu m] | 12846 | 100% | 100% | 12864 | m3 | 12846 | 823B_AB |
| 823B-CC-A9-ELS-1090 |  | ELS Stage 7 (19,296m³) | 21d | 2013-02-27 A | 2013-06-27 A | 823B-CC-A7-ELS-1070 SS+24d | 100% | 2013-02-04 | 2013-03-02 | Bulk Excavation [19296 Cu m]; Excavation [19296 Cu m] | 19296 | 100% | 100% | 19296 | m3 | 19296 | 823B_AB |
|  | 3 | **Tunnel Structure** |  | 2013-05-29 | 2014-10-25 |  |  |  |  |  |  |  |  |  |  |  |  |
| 823B-CC-A9-RT-1010 |  | Running Tunnel (Bay RT11) - Base Slab (396m³ conc) | 9d | 2013-05-29 A | 2013-06-07 A | 823B-CC-A9-ELS-1090, 823B-CC-A10-RT-1250 | 100% | 2013-03-25 | 2013-04-08 | Concrete [396 Cu m]; Rebar [52 t] | 396 | 100% | 100% | 396 | m3 | 396 | 823B_AB |
| 823B-CC-A9-RT-1070 |  | Running Tunnel (Bay RT10) - Base Slab (396m³) | 9d | 2013-06-07 A | 2013-06-17 A | 823B-CC-A9-RT-1010 | 100% | 2013-04-09 | 2013-04-18 | Concrete [396 Cu m]; Rebar [52 t] | 396 | 100% | 100% | 396 | m3 | 396 | 823B_AB |
| 823B-CC-A9-RT-1020 |  | Running Tunnel (Bay RT11) - Wall (657m³ conc) | 9d | 2013-06-08 A | 2013-06-13 A | 823B-CC-A9-RT-1010 | 100% | 2013-04-09 | 2013-04-18 | Concrete [657 Cu m]; Backfilling [2234 Cu m]; Rebar [86 t] | 657 | 100% | 100% | 657 | m3 | 657 | 823B_AB |
| 823B-CC-A9-RT-1130 |  | Running Tunnel (Bay RT9) - Base Slab (396m³ conc) | 9d | 2013-06-14 A | 2013-06-24 A | 823B-CC-A9-ELS-1090 | 100% | 2013-03-04 | 2013-03-13 | Concrete [396 Cu m]; Rebar [52 t] | 396 | 100% | 100% | 396 | m3 | 396 | 823B_AB |
| 823B-CC-A9-RT-1190 |  | Earth Mat @ Bay RT7 & RT8 (Type E) | 12d | 2013-06-17 A | 2013-07-02 A | 823B-CC-A9-ELS-1090 | 100% | 2013-03-04 | 2013-03-16 |  |  | 100% | 100% |  |  |  | 823B_AB |
| 823B-CC-A9-RT-1140 |  | Running Tunnel (Bay RT9) - Wall (657m³ conc) | 9d | 2013-06-25 A | 2013-08-09 A | 823B-CC-A9-RT-1130 | 100% | 2013-03-14 | 2013-03-23 | Concrete [657 Cu m]; Backfilling [2234 Cu m]; Rebar [86 t] | 657 | 100% | 100% | 657 | m3 | 657 | 823B_AB |
| 823B-CC-A9-RT-1200 |  | Running Tunnel (Bay RT8) - Base Slab (621m³ conc) | 9d | 2013-06-28 A | 2013-07-09 A | 823B-CC-A9-RT-1190, 823B-CC-A9-RT-1140 | 100% | 2013-03-25 | 2013-04-08 | Concrete [621 Cu m]; Rebar [81 t] | 621 | 100% | 100% | 621 | m3 | 621 | 823B_AB |
| 823B-CC-A9-RT-1260 |  | Running Tunnel (Bay RT7) - Base Slab (1,232m³ conc) | 9d | 2013-07-08 A | 2013-07-17 A | 823B-CC-A9-RT-1190, 823B-CC-A9-RT-1200 | 100% | 2013-04-09 | 2013-04-18 | Concrete [1232 Cu m]; Rebar [161 t] | 1232 | 100% | 100% | 1232 | m3 | 1232 | 823B_AB |
| 823B-CC-A9-RT-1210 |  | Running Tunnel (Bay RT8) - Wall (657m³ conc) | 9d | 2013-07-10 A | 2013-08-22 A | 823B-CC-A9-RT-1200 | 100% | 2013-04-09 | 2013-04-18 | Concrete [657 Cu m]; Backfilling [2163 Cu m]; Rebar [86 t] | 657 | 100% | 100% | 657 | m3 | 657 | 823B_AB |
| 823B-CC-A9-RT-1030 |  | Running Tunnel (Bay RT11) - Roof (616m³ conc) | 26d | 2013-07-15 A | 2013-07-31 A | 823B-CC-A9-RT-1020 | 100% | 2013-04-19 | 2013-05-21 | Concrete [616 Cu m]; Backfilling [1427 Cu m]; Rebar [81 t] | 616 | 100% | 100% | 616 | m3 | 616 | 823B_AB |
| 823B-CC-A9-RT-1080 |  | Running Tunnel (Bay RT10) - Wall (657m³) | 9d | 2013-07-18 A | 2013-07-29 A | 823B-CC-A9-RT-1070 | 100% | 2013-04-19 | 2013-04-29 | Concrete [657 Cu m]; Backfilling [2234 Cu m]; Rebar [86 t] | 657 | 100% | 100% | 657 | m3 | 657 | 823B_AB |
| 823B-CC-A9-RT-1270 |  | Running Tunnel (Bay RT7) - Wall (657m³ conc) | 9d | 2013-07-18 A | 2013-11-13 A | 823B-CC-A9-RT-1260 | 100% | 2013-04-19 | 2013-04-29 | Concrete [657 Cu m]; Backfilling [1970 Cu m]; Rebar [85 t] | 657 | 100% | 100% | 657 | m3 | 657 | 823B_AB |
| 823B-CC-A9-RT-1090 |  | Running Tunnel (Bay RT10) - Roof (616m³) | 24d | 2013-07-30 A | 2013-08-09 A | 823B-CC-A9-RT-1080 FS+6d | 100% | 2013-05-08 | 2013-06-05 | Concrete [616 Cu m]; Rebar [25 t] | 616 | 100% | 100% | 616 | m3 | 616 | 823B_AB |
| 823B-CC-A9-RT-1150 |  | Running Tunnel (Bay RT9) - Roof (616m³ conc) | 24d | 2013-08-10 A | 2013-08-21 A | 823B-CC-A9-RT-1140 | 100% | 2013-03-25 | 2013-04-25 | Concrete [616 Cu m]; Rebar [81 t] | 616 | 100% | 100% | 616 | m3 | 616 | 823B_AB |
| 823B-CC-A9-RT-1220 |  | Running Tunnel (Bay RT8) - Roof (557m³ conc) | 24d | 2013-08-12 A | 2013-09-16 A | 823B-CC-A9-RT-1210, 823B-CC-A9-RT-1160 SS+12d | 100% | 2013-05-20 | 2013-06-17 | Concrete [557 Cu m]; Backfilling [537 Cu m]; Rebar [73 t] | 557 | 100% | 100% | 557 | m3 | 557 | 823B_AB |
| 823B-CC-A9-RT-1280 |  | Running Tunnel (Bay RT7) - Roof (396m³ conc) | 24d | 2013-09-18 A | 2014-01-02 A | 823B-CC-A9-RT-1270 FS+6d | 100% | 2013-05-08 | 2013-06-05 | Concrete [396 Cu m]; Backfilling [1927 Cu m]; Rebar [52 t] | 396 | 100% | 100% | 396 | m3 | 396 | 823B_AB |
| 823B-CC-A9-RT-1182 |  | Running Tunnel (Bay RT11 to RT9) - Cable bracket installation | 12d | 2013-09-26 A | 2013-10-07 A | 823B-CC-A10-RT-1320 | 100% | 2013-07-22 | 2013-08-03 |  |  | 100% | 100% |  |  |  | 823B_AB |
| 823B-CC-A9-RT-1181 |  | Running Tunnel (Bay RT11 to RT9) - Mass concrete (invert & walkway) | 12d | 2013-10-02 A | 2013-12-03 A | 823B-CC-A10-RT-1310, 823B-CC-A9-RT-1030, 823B-CC-A9-RT-1090, 823B-CC-A9-RT-1150 | 100% | 2013-07-08 | 2013-07-20 |  |  | 100% | 100% |  |  |  | 823B_AB |
| 823B-CC-A9-RT-1186 |  | Approach Tunnel (Bay RT9 to RT11) - Cable bracket installation | 16d | 2013-10-02 A | 2013-12-31 A | 823B-CC-A9-RT-1184 SS+12d | 100% | 2013-09-09 | 2013-09-27 |  |  | 100% | 100% |  |  |  | 823B_AB |
| 823B-CC-A9-RT-1320 |  | Running Tunnel (Bay RT7 & RT8) - Mass concrete (invert & walkway) | 12d | 2013-10-09 A | 2013-12-07 A | 823B-CC-A7-RT-1401 | 100% | 2013-07-08 | 2013-07-20 |  |  | 100% | 100% |  |  |  | 823B_AB |
| 823B-CC-A9-RT-1040 |  | Approach Tunnel (Bay RT11) - Intermediate Wall (492m³ conc) | 32d | 2013-12-02 A | 2013-12-23 A | 823B-CC-A9-RT-1030 FS+6d | 100% | 2013-05-29 | 2013-07-06 | Backfilling [1427 Cu m]; Concrete [492 Cu m]; Rebar [31 t] | 492 | 100% | 100% | 492 | m3 | 492 | 823B_AB |
| 823B-CC-A9-RT-1100 |  | Approach Tunnel (Bay RT10) - Intermediate Wall (624m³ conc) | 24d | 2013-12-02 A | 2014-01-25 A | 823B-CC-A9-RT-1090 FS+6d | 100% | 2013-06-14 | 2013-07-12 | Concrete [624 Cu m]; Backfilling [2067 Cu m]; Rebar [48 t] | 624 | 100% | 100% | 624 | m3 | 624 | 823B_AB |
| 823B-CC-A9-RT-1050 |  | Approach Tunnel (Bay RT11) - Structure (1,371m³ conc) | 53d | 2014-01-02 A | 2014-08-30 A | 823B-CC-A9-RT-1040 | 100% | 2013-07-08 | 2013-09-06 | Concrete [1371 Cu m]; Rebar [178 t] | 1371 | 100% | 100% | 1371 | m3 | 1371 | 823B_AB |
| 823B-CC-A9-RT-1160 |  | Approach Tunnel (Bay RT9) - Intermediate Wall (635m³ conc) | 24d | 2014-01-02 A | 2014-01-22 A | 823B-CC-A9-RT-1150 FS+6d | 100% | 2013-05-04 | 2013-06-01 | Concrete [635 Cu m]; Backfilling [1903 Cu m]; Rebar [50 t] | 635 | 100% | 100% | 635 | m3 | 635 | 823B_AB |
| 823B-CC-A9-RT-1110 |  | Approach Tunnel (Bay RT10) - Structure (1,404m³ conc) | 53d | 2014-03-01 A | 2014-08-02 A | 823B-CC-A9-RT-1100 | 100% | 2014-03-01 | 2014-05-08 | Concrete [1404 Cu m]; Rebar [183 t] | 1404 | 100% | 100% | 1404 | m3 | 1404 | 823B_AB |
| 823B-CC-A9-RT-1170 |  | Approach Tunnel (Bay RT9) - Structure (1,292m³ conc) | 53d | 2014-03-01 A | 2014-08-01 A | 823B-CC-A9-RT-1160 | 100% | 2014-03-01 | 2014-05-08 | Concrete [1292 Cu m]; Rebar [168 t] | 1292 | 100% | 100% | 1292 | m3 | 1292 | 823B_AB |
| 823B-CC-A9-RT-1230 |  | Approach Tunnel (Bay RT8) - Intermediate Wall (875m³ conc) | 24d | 2014-03-01 A | 2014-03-26 A | 823B-CC-A9-RT-1220 FS+6d | 100% | 2014-03-01 | 2014-03-28 | Concrete [875 Cu m]; Backfilling [1896 Cu m]; Rebar [81 t] | 875 | 100% | 100% | 875 | m3 | 875 | 823B_AB |
| 823B-CC-A9-RT-1290 |  | Approach Tunnel (Bay RT7) - Intermediate Wall (1,496m³ conc) | 24d | 2014-03-01 A | 2014-03-21 A | 823B-CC-A9-RT-1280 FS+6d | 100% | 2014-03-01 | 2014-03-28 | Concrete [1496 Cu m]; Backfilling [944 Cu m]; Rebar [162 t] | 1496 | 100% | 100% | 1496 | m3 | 1496 | 823B_AB |
| 823B-CC-A9-RT-1240 |  | Approach Tunnel (Bay RT8) - Structure (1,341m³ conc) | 50d | 2014-04-01 A | 2014-08-16 A | 823B-CC-A9-RT-1230 | 100% | 2014-04-01 | 2014-06-05 | Concrete [1341 Cu m]; Rebar [174 t] | 1341 | 100% | 100% | 1341 | m3 | 1341 | 823B_AB |
| 823B-CC-A9-RT-1300 |  | Approach Tunnel (Bay RT7) - Structure (1,405m³ conc) | 53d | 2014-04-01 A | 2014-08-13 A | 823B-CC-A9-RT-1290 | 100% | 2014-04-01 | 2014-06-09 | Concrete [1405 Cu m]; Rebar [56 t] | 1405 | 100% | 100% | 1405 | m3 | 1349 | 823B_AB |
| 823B-CC-A9-RT-1184 |  | Approach Tunnel (Bay RT9 to RT11) - Mass concrete (invert & walkway) | 16d | 2014-05-14 A | 2014-08-29 A | 823B-CC-A9-RT-1180 SS+17d | 100% | 2014-07-08 | 2014-07-25 |  |  | 100% | 100% |  |  |  | 823B_AB |
| 823B-CC-A9-RT-1330 |  | Running Tunnel (Bay RT7 & RT8) - Cable bracket installation | 12d | 2014-06-03 A | 2014-06-16 A | 823B-CC-A7-RT-1402, 823B-CC-A9-RT-1320 | 100% |  |  |  |  | 100% | 100% |  |  |  | 823B_AB |
| 823B-CC-A9-RT-1340 |  | Approach Tunnel (Bay RT7 & RT8) - Mass concrete (invert & walkway) | 12d | 2014-07-24 A | 2014-07-31 A | 823B-CC-A7-RT-1404 | 100% | 2014-07-24 | 2014-08-06 |  |  | 100% | 100% |  |  |  | 823B_AB |
| 823B-CC-A9-RT-1250 |  | Approach Tunnel (Bay RT8) - Backfilling (4,421m³ backfill) | 12d | 2014-08-04 A | 2014-10-10 A | 823B-CC-A9-RT-1240 | 100% | 2014-08-04 | 2014-08-16 | Backfilling [4421 Cu m]; Concrete [256 Cu m] | 4421 | 100% | 100% | 4421 | m3 | 1768 | 823B_AB |
| 823B-CC-A9-RT-1310 |  | Approach Tunnel (Bay RT7) - Backfilling (4,157m³ backfill) | 18d | 2014-08-04 A | 2014-10-18 A | 823B-CC-A9-RT-1300 | 100% | 2014-08-04 | 2014-08-23 | Backfilling [4157 Cu m]; Concrete [256 Cu m] | 4157 | 100% | 100% | 4157 | m3 | 4157 | 823B_AB |
| 823B-CC-A9-RT-1060 |  | Approach Tunnel (Bay RT11) - Backfilling (6,910m³ backfill) | 23d | 2014-10-03 A | 2014-10-25 A | 823B-CC-A9-RT-1050 | 100% | 2014-10-03 | 2014-10-29 | Backfilling [6910 Cu m]; Concrete [256 Cu m] | 6910 | 100% | 100% | 6910 | m3 | 6910 | 823B_AB |
| 823B-CC-A9-RT-1120 |  | Approach Tunnel (Bay RT10) - Backfilling (4,877m³ backfill) | 18d | 2014-10-03 A | 2014-10-23 A | 823B-CC-A9-RT-1110 | 100% |  |  | Backfilling [4877 Cu m]; Concrete [256 Cu m] | 4877 | 100% | 100% | 4877 | m3 | 4877 | 823B_AB |
| 823B-CC-A9-RT-1180 |  | Approach Tunnel (Bay RT9) - Backfilling (4,976m³ backfill) | 28d | 2014-10-03 A | 2014-10-25 A | 823B-CC-A9-RT-1170 | 100% | 2014-10-03 | 2014-11-04 | Backfilling [4976 Cu m]; Concrete [256 Cu m] | 4976 | 100% | 100% | 4976 | m3 | 4976 | 823B_AB |
| 823B-CC-A9-RT-1350 |  | Approach Tunnel (Bay RT7 & RT8) - Cable bracket installation | 12d | 2014-10-10 A | 2014-10-23 A | 823B-CC-A7-RT-1405, 823B-CC-A9-RT-1340 | 100% |  |  |  |  | 100% | 100% |  |  |  | 823B_AB |

| ID | WBS | Activity | Duration | Start | Finish | Predecessors | Complete | Planned start | Planned finish | Resources | user_text4 | user_text6 | user_text7 | user_integer1 | user_text1 | user_text5 | 823B_As-built |
| --- | --- | --- | --- | --- | --- | --- | --- | --- | --- | --- | --- | --- | --- | --- | --- | --- | --- |
|  | 3 | **AREA 10 - CH124+549 to CH124+650** |  | 2011-03-29 | 2014-10-29 |  |  |  |  |  |  |  |  |  |  |  |  |
|  | 1 | **D-Wall Construction** |  | 2011-03-29 | 2012-05-31 |  |  |  |  |  |  |  |  |  |  |  |  |
| 823B-CC-A10-DW-1010 |  | D-wall construction completed (11,037m³ conc) | 346d | 2011-03-29 A | 2012-05-31 A | 823B-AC-0150, 823B-AC-0060, 823B-AC-0095, 823B-AC-0100, 823B-AC-0105, 823B-AC-0110, 823B-AC-0115, 823B-AC-0120, 823B-AC-0125, 823B-AC-0130, 823B-AC-0135, 823B-AC-0140, 823B-AC-0145, 823B-A-PWS-0240, 823B-A-PWS-0140, 823B-A-PWS-0150, 823B-A-PWS-0160, 823B-A-PWS-0170, 823B-A-TWS-0110, 823B-A-PWS-0430, 823B-DP001-070 | 100% |  |  | Concrete [11037 Cu m] | 11037 | 100% | 100% | 11037 | m3 | 11037 | 823B_AB |
|  | 2 | **ELS Works** |  | 2012-06-01 | 2013-06-21 |  |  |  |  |  |  |  |  |  |  |  |  |
| 823B-CC-A10-ELS-1010 |  | ELS Stage 1 (incl. pumping test) (9,435m³) | 50d | 2012-06-01 A | 2012-07-31 A | 823B-CC-A10-DW-1010 | 100% |  |  | Bulk Excavation [9435 Cu m]; Excavation [9435 Cu m] | 9435 | 100% | 100% | 9435 | m3 | 9435 | 823B_AB |
| 823B-CC-A10-ELS-1020 |  | ELS Stage 2 (9,247m³) | 49d | 2012-08-01 A | 2012-09-26 A | 823B-CC-A10-ELS-1010 | 100% |  |  | Bulk Excavation [9247 Cu m]; Excavation [9247 Cu m] | 9247 | 100% | 100% | 9247 | m3 | 9247 | 823B_AB |
| 823B-CC-A10-ELS-1030 |  | ELS Stage 3 (10,191m³) | 54d | 2012-09-27 A | 2012-12-01 A | 823B-CC-A10-ELS-1020 | 100% |  |  | Bulk Excavation [10191 Cu m]; Excavation [10191 Cu m] | 10191 | 100% | 100% | 10191 | m3 | 10191 | 823B_AB |
| 823B-CC-A10-ELS-1040 |  | ELS Stage 4 (7,340m³) | 6d | 2012-12-03 A | 2012-12-20 A | 823B-CC-A10-ELS-1030 | 100% | 2012-12-03 | 2012-12-08 | Bulk Excavation [7340 Cu m]; Excavation [7340 Cu m] | 7340 | 100% | 100% | 7340 | m3 | 7340 | 823B_AB |
| 823B-CC-A10-ELS-1050 |  | ELS Stage 5 (7,340m³) | 6d | 2012-12-21 A | 2013-01-08 A | 823B-CC-A10-ELS-1040 | 100% | 2012-12-10 | 2012-12-15 | Bulk Excavation [7340 Cu m]; Excavation [7340 Cu m] | 7340 | 100% | 100% | 7340 | m3 | 7340 | 823B_AB |
| 823B-CC-A10-ELS-1060 |  | ELS Stage 6 (14,679m³) | 12d | 2013-01-09 A | 2013-02-20 A | 823B-CC-A10-ELS-1050, 823B-CC-A11-ELS-1060 SS | 100% | 2013-01-07 | 2013-01-19 | Bulk Excavation [14679 Cu m]; Excavation [14679 Cu m] | 14679 | 100% | 100% | 14679 | m3 | 14679 | 823B_AB |
| 823B-CC-A10-ELS-1070 |  | ELS Stage 7 (25,688m³) | 21d | 2013-02-21 A | 2013-06-21 A | 823B-CC-A10-ELS-1060, 823B-CC-A9-ELS-1090 SS | 100% | 2013-02-04 | 2013-03-02 | Bulk Excavation [25688 Cu m]; Excavation [25688 Cu m] | 25688 | 100% | 100% | 25688 | m3 | 25688 | 823B_AB |
|  | 3 | **Tunnel Structure** |  | 2013-05-25 | 2014-10-29 |  |  |  |  |  |  |  |  |  |  |  |  |
| 823B-CC-A10-RT-1010 |  | Running Tunnel (Bay RT16) - Base Slab (616m³ conc) | 9d | 2013-05-25 A | 2013-06-04 A | 823B-CC-A10-ELS-1070 | 100% | 2013-03-04 | 2013-03-13 | Concrete [616 Cu m]; Rebar [81 t] | 616 | 100% | 100% | 616 | m3 | 616 | 823B_AB |
| 823B-CC-A10-RT-1250 |  | Running Tunnel (Bay RT12) - Base Slab (396m³ conc) | 9d | 2013-05-27 A | 2013-07-31 A | 823B-CC-A10-RT-1190 | 100% | 2013-03-14 | 2013-03-23 | Concrete [396 Cu m]; Rebar [52 t] | 396 | 100% | 100% | 396 | m3 | 396 | 823B_AB |
| 823B-CC-A10-RT-1260 |  | Running Tunnel (Bay RT12) - Wall (657m³ conc) | 9d | 2013-06-01 A | 2013-09-07 A | 823B-CC-A10-RT-1250 | 100% | 2013-03-25 | 2013-04-08 | Concrete [657 Cu m]; Backfilling [2234 Cu m]; Rebar [86 t] | 657 | 100% | 100% | 657 | m3 | 657 | 823B_AB |
| 823B-CC-A10-RT-1020 |  | Running Tunnel (Bay RT16) - Wall (637m³ conc) | 9d | 2013-06-05 A | 2013-06-28 A | 823B-CC-A10-RT-1010 | 100% | 2013-03-14 | 2013-03-23 | Concrete [637 Cu m]; Backfilling [1310 Cu m]; Rebar [83 t] | 637 | 100% | 100% | 637 | m3 | 637 | 823B_AB |
| 823B-CC-A10-RT-1070 |  | Running Tunnel (Bay RT15) - Base Slab (616m³ conc) | 9d | 2013-06-11 A | 2013-06-20 A | 823B-CC-A10-RT-1010 | 100% | 2013-03-14 | 2013-03-23 | Concrete [616 Cu m]; Rebar [81 t] | 616 | 100% | 100% | 616 | m3 | 616 | 823B_AB |
| 823B-CC-A10-RT-1130 |  | Running Tunnel (Bay RT14) - Base Slab (512m³ conc) | 9d | 2013-06-19 A | 2013-06-28 A | 823B-CC-A10-RT-1070 | 100% | 2013-03-25 | 2013-04-08 | Concrete [512 Cu m]; Rebar [67 t] | 512 | 100% | 100% | 512 | m3 | 512 | 823B_AB |
| 823B-CC-A10-RT-1080 |  | Running Tunnel (Bay RT15) - Wall (1,957m³ conc) | 9d | 2013-06-21 A | 2013-07-19 A | 823B-CC-A10-RT-1070 | 100% | 2013-03-25 | 2013-04-08 | Concrete [657 Cu m]; Backfilling [1957 Cu m]; Rebar [86 t] | 1957 | 100% | 100% | 1957 | m3 | 1957 | 823B_AB |
| 823B-CC-A10-RT-1190 |  | Running Tunnel (Bay RT13) - Base Slab (396m³ conc) | 9d | 2013-06-24 A | 2013-07-04 A | 823B-CC-A10-ELS-1070 | 100% | 2013-03-04 | 2013-03-13 | Concrete [396 Cu m]; Rebar [52 t] | 396 | 100% | 100% | 396 | m3 | 396 | 823B_AB |
| 823B-CC-A10-RT-1030 |  | Running Tunnel (Bay RT16) - Roof (651m³ conc) | 26d | 2013-06-29 A | 2013-07-13 A | 823B-CC-A10-RT-1020 | 100% | 2013-03-25 | 2013-04-27 | Concrete [651 Cu m]; Backfilling [235 Cu m]; Rebar [85 t] | 651 | 100% | 100% | 651 | m3 | 651 | 823B_AB |
| 823B-CC-A10-RT-1140 |  | Running Tunnel (Bay RT14) - Wall (657m³ conc) | 9d | 2013-06-29 A | 2013-08-02 A | 823B-CC-A10-RT-1130 | 100% | 2013-04-09 | 2013-04-18 | Concrete [657 Cu m]; Backfilling [2155 Cu m]; Rebar [86 t] | 657 | 100% | 100% | 657 | m3 | 657 | 823B_AB |
| 823B-CC-A10-RT-1200 |  | Running Tunnel (Bay RT13) - Wall (657m³ conc) | 9d | 2013-07-05 A | 2013-08-26 A | 823B-CC-A10-RT-1190 | 100% | 2013-03-14 | 2013-03-23 | Concrete [657 Cu m]; Backfilling [2234 Cu m]; Rebar [86 t] | 657 | 100% | 100% | 657 | m3 | 657 | 823B_AB |
| 823B-CC-A10-RT-1090 |  | Running Tunnel (Bay RT15) - Roof (569m³ conc) | 24d | 2013-07-20 A | 2013-10-11 A | 823B-CC-A10-RT-1080, 823B-CC-A10-RT-1040 SS | 100% | 2013-05-07 | 2013-06-04 | Concrete [569 Cu m]; Rebar [74 t] | 569 | 100% | 100% | 569 | m3 | 569 | 823B_AB |
| 823B-CC-A10-RT-1092 |  | Cross Passage (CP31 @ Bay RT15) - Base Slab | 6d | 2013-07-29 A | 2013-08-03 A | 823B-CC-A10-RT-1070 | 100% | 2013-03-25 | 2013-04-03 |  |  | 100% | 100% |  |  |  | 823B_AB |
| 823B-CC-A10-RT-1242 |  | Running Tunnel (Bay RT13 to RT16) - Cable bracket installation | 12d | 2013-07-31 A | 2013-09-30 A | 823B-CC-A10-RT-1241 SS+12d | 100% | 2013-07-15 | 2013-07-27 |  |  | 100% | 100% |  |  |  | 823B_AB |
| 823B-CC-A10-RT-1210 |  | Running Tunnel (Bay RT13) - Roof (616m³ conc) | 26d | 2013-08-01 A | 2013-08-27 A | 823B-CC-A10-RT-1200 | 100% | 2013-03-25 | 2013-04-27 | Concrete [616 Cu m]; Rebar [81 t] | 616 | 100% | 100% | 616 | m3 | 616 | 823B_AB |
| 823B-CC-A10-RT-1150 |  | Running Tunnel (Bay RT14) - Roof (592m³ conc) | 26d | 2013-08-03 A | 2013-10-22 A | 823B-CC-A10-RT-1140 | 100% | 2013-04-19 | 2013-05-21 | Concrete [592 Cu m]; Rebar [77 t] | 592 | 100% | 100% | 592 | m3 | 592 | 823B_AB |
| 823B-CC-A10-RT-1094 |  | Cross Passage (CP31 @ Bay RT15) - Wall | 6d | 2013-08-05 A | 2013-08-10 A | 823B-CC-A10-RT-1092, 823B-CC-A10-RT-1080 | 100% | 2013-04-09 | 2013-04-15 |  |  | 100% | 100% |  |  |  | 823B_AB |
| 823B-CC-A10-RT-1096 |  | Cross Passage (CP31 @ Bay RT15) - Roof | 12d | 2013-08-12 A | 2013-08-24 A | 823B-CC-A10-RT-1094, 823B-CC-A10-RT-1090 | 100% | 2013-06-05 | 2013-06-19 |  |  | 100% | 100% |  |  |  | 823B_AB |
| 823B-CC-A10-RT-1040 |  | Approach Tunnel (Bay RT16) - Intermediate Wall (574m³ conc) | 18d | 2013-09-02 A | 2013-09-25 A | 823B-CC-A10-RT-1030 FS+6d | 100% | 2013-05-07 | 2013-05-28 | Concrete [574 Cu m]; Rebar [42 t] | 574 | 100% | 100% | 574 | m3 | 574 | 823B_AB |
| 823B-CC-A10-RT-1270 |  | Running Tunnel (Bay RT12) - Roof (616m³ conc) | 24d | 2013-09-09 A | 2013-09-21 A | 823B-CC-A10-RT-1260, 823B-CC-A10-RT-1220 SS | 100% | 2013-05-07 | 2013-06-04 | Concrete [616 Cu m]; Rebar [81 t] | 616 | 100% | 100% | 616 | m3 | 616 | 823B_AB |
| 823B-CC-A10-RT-1241 |  | Running Tunnel (Bay RT13 to RT16) - Mass concrete (invert & walkway) | 12d | 2013-09-23 A | 2013-10-11 A | 823B-CC-A10-RT-1230 SS+12d | 100% | 2013-06-29 | 2013-07-13 |  |  | 100% | 100% |  |  |  | 823B_AB |
| 823B-CC-A10-RT-1050 |  | Approach Tunnel (Bay RT16) - Structure (724m³ conc) | 54d | 2013-09-24 A | 2014-02-07 A | 823B-CC-A10-RT-1040 | 100% | 2013-05-29 | 2013-08-01 | Concrete [724 Cu m]; Rebar [94 t] | 724 | 100% | 100% | 724 | m3 | 724 | 823B_AB |
| 823B-CC-A10-RT-1320 |  | Running Tunnel (Bay RT12) - Cable bracket installation | 6d | 2013-09-26 A | 2013-09-30 A | 823B-CC-A10-RT-1310 SS+12d | 100% | 2013-07-15 | 2013-07-20 |  |  | 100% | 100% |  |  |  | 823B_AB |
| 823B-CC-A10-RT-1310 |  | Running Tunnel (Bay RT12) - Mass concrete (invert & walkway) | 6d | 2013-10-29 A | 2013-11-04 A | 823B-CC-A10-RT-1280 SS+14d | 100% | 2013-06-29 | 2013-07-06 |  |  | 100% | 100% |  |  |  | 823B_AB |
| 823B-CC-A10-RT-1100 |  | Approach Tunnel (Bay RT15) - Intermediate Wall (408m³ conc) | 24d | 2013-11-01 A | 2013-11-06 A | 823B-CC-A10-RT-1090 FS+6d | 100% | 2013-06-13 | 2013-07-11 | Concrete [408 Cu m]; Backfilling [603 Cu m]; Rebar [20 t] | 408 | 100% | 100% | 408 | m3 | 408 | 823B_AB |
| 823B-CC-A10-RT-1160 |  | Approach Tunnel (Bay RT14) - Intermediate Wall (382m³ conc) | 32d | 2013-11-01 A | 2013-11-27 A | 823B-CC-A10-RT-1150 FS+6d | 100% | 2013-05-29 | 2013-07-06 | Concrete [382 Cu m]; Backfilling [532 Cu m]; Rebar [17 t] | 382 | 100% | 100% | 382 | m3 | 382 | 823B_AB |
| 823B-CC-A10-RT-1220 |  | Approach Tunnel (Bay RT13) - Intermediate Wall (370m³ conc) | 32d | 2013-11-01 A | 2013-11-21 A | 823B-CC-A10-RT-1210 FS+6d | 100% | 2013-05-07 | 2013-06-14 | Concrete [370 Cu m]; Backfilling [490 Cu m]; Rebar [15 t] | 370 | 100% | 100% | 370 | m3 | 370 | 823B_AB |
| 823B-CC-A10-RT-1280 |  | Approach Tunnel (Bay RT12) - Intermediate Wall (533m³ conc) | 24d | 2013-11-01 A | 2013-11-21 A | 823B-CC-A10-RT-1270 FS+6d | 100% | 2013-06-13 | 2013-07-11 | Concrete [533 Cu m]; Backfilling [1354 Cu m]; Rebar [36 t] | 533 | 100% | 100% | 533 | m3 | 533 | 823B_AB |
| 823B-CC-A10-RT-1110 |  | Approach Tunnel (Bay RT15) - Structure (1,205m³ conc) | 53d | 2013-11-18 A | 2014-02-15 A | 823B-CC-A10-RT-1100 | 100% | 2013-07-12 | 2013-09-11 | Concrete [1205 Cu m]; Rebar [157 t] | 1205 | 100% | 100% | 1205 | m3 | 1205 | 823B_AB |
| 823B-CC-A10-RT-1290 |  | Approach Tunnel (Bay RT12) - Structure (1,560m³ conc) | 53d | 2013-12-02 A | 2014-04-14 A | 823B-CC-A10-RT-1280 | 100% | 2013-07-12 | 2013-09-11 | Concrete [1560 Cu m]; Rebar [203 t] | 1560 | 100% | 100% | 1560 | m3 | 1560 | 823B_AB |
| 823B-CC-A10-RT-1170 |  | Approach Tunnel (Bay RT14) - Structure (1,029m³ conc) | 53d | 2014-01-02 A | 2014-02-28 A | 823B-CC-A10-RT-1160 | 100% | 2013-07-08 | 2013-09-06 | Concrete [1029 Cu m]; Rebar [134 t] | 1029 | 100% | 100% | 1029 | m3 | 1029 | 823B_AB |
| 823B-CC-A10-RT-1230 |  | Approach Tunnel (Bay RT13) - Structure (1,057m³ conc) | 62d | 2014-01-02 A | 2014-03-28 A | 823B-CC-A10-RT-1220 | 100% | 2013-06-15 | 2013-08-27 | Concrete [1057 Cu m]; Rebar [138 t] | 1057 | 100% | 100% | 1057 | m3 | 1057 | 823B_AB |
| 823B-CC-A10-RT-1060 |  | Approach Tunnel (Bay RT16) - Backfilling (7,481m³ backfill) | 28d | 2014-03-01 A | 2014-04-30 A | 823B-CC-A10-RT-1050 | 100% | 2014-03-01 | 2014-04-02 | Backfilling [7481 Cu m]; Concrete [256 Cu m] | 7481 | 100% | 100% | 7481 | m3 | 7481 | 823B_AB |
| 823B-CC-A10-RT-1120 |  | Approach Tunnel (Bay RT15) - Backfilling (8,192m³ backfill) | 19d | 2014-04-01 A | 2014-04-26 A | 823B-CC-A10-RT-1110 | 100% |  |  | Backfilling [8192 Cu m]; Concrete [256 Cu m] | 8192 | 100% | 100% | 8192 | m3 | 8192 | 823B_AB |
| 823B-CC-A10-RT-1180 |  | Approach Tunnel (Bay RT14) - Backfilling (7,671m³ backfill) | 23d | 2014-04-01 A | 2014-09-01 A | 823B-CC-A10-RT-1170 | 100% | 2014-04-01 | 2014-05-02 | Backfilling [7671 Cu m]; Concrete [256 Cu m] | 7671 | 100% | 100% | 7671 | m3 | 7671 | 823B_AB |
| 823B-CC-A10-RT-1240 |  | Approach Tunnel (Bay RT13) - Backfilling (7,645m³ backfill) | 28d | 2014-04-01 A | 2014-09-01 A | 823B-CC-A10-RT-1230 | 100% | 2014-04-01 | 2014-05-09 | Backfilling [7645 Cu m]; Concrete [256 Cu m] | 7645 | 100% | 100% | 7645 | m3 | 7645 | 823B_AB |
| 823B-CC-A10-RT-1243 |  | Approach Tunnel (Bay RT13 to RT15) - Mass concrete (invert & walkway) | 20d | 2014-05-02 A | 2014-06-23 A | 823B-CC-A10-RT-1230, 823B-CC-A10-RT-1170 SS+44d, 823B-CC-A10-RT-1110 SS | 100% | 2014-05-02 | 2014-05-26 |  |  | 100% | 100% |  |  |  | 823B_AB |
| 823B-CC-A10-RT-1245 |  | Approach Tunnel (Bay RT16) - Mass concrete (invert & walkway) | 6d | 2014-05-02 A | 2014-06-17 A | 823B-CC-A10-RT-1060 SS+30d | 100% | 2014-05-02 | 2014-05-09 |  |  | 100% | 100% |  |  |  | 823B_AB |
| 823B-CC-A10-RT-1300 |  | Approach Tunnel (Bay RT12) - Backfilling (7,048m³ backfill) | 19d | 2014-05-02 A | 2014-09-01 A | 823B-CC-A10-RT-1290 | 100% | 2014-05-02 | 2014-05-24 | Backfilling [7048 Cu m]; Concrete [256 Cu m] | 7048 | 100% | 100% | 7048 | m3 | 7048 | 823B_AB |
| 823B-CC-A10-RT-1330 |  | Approach Tunnel (Bay RT12) - Mass concrete (invert & walkway) | 6d | 2014-06-03 A | 2014-06-23 A | 823B-CC-A9-RT-1184, 823B-CC-A10-RT-1290 | 100% | 2014-07-29 | 2014-08-04 |  |  | 100% | 100% |  |  |  | 823B_AB |
| 823B-CC-A10-RT-1244 |  | Approach Tunnel (Bay RT13 to RT15) - Cable bracket installation | 20d | 2014-10-03 A | 2014-10-25 A | 823B-CC-A10-RT-1243 SS+12d | 100% |  |  |  |  | 100% | 100% |  |  |  | 823B_AB |
| 823B-CC-A10-RT-1246 |  | Approach Tunnel (Bay RT16) - Cable bracket installation | 6d | 2014-10-03 A | 2014-10-09 A | 823B-CC-A10-RT-1245 SS+12d | 100% |  |  |  |  | 100% | 100% |  |  |  | 823B_AB |
| 823B-CC-A10-RT-1340 |  | Approach Tunnel (Bay RT12) - Cable bracket installation | 6d | 2014-10-23 A | 2014-10-29 A | 823B-CC-A9-RT-1186 | 100% |  |  |  |  | 100% | 100% |  |  |  | 823B_AB |

| ID | WBS | Activity | Duration | Start | Finish | Predecessors | Complete | Planned start | Planned finish | Resources | user_text4 | user_text6 | user_text7 | user_integer1 | user_text1 | user_text5 | 823B_As-built |
| --- | --- | --- | --- | --- | --- | --- | --- | --- | --- | --- | --- | --- | --- | --- | --- | --- | --- |
|  | 4 | **AREA 11 - CH124+650 to CH124+766** |  | 2011-12-24 | 2014-10-22 |  |  |  |  |  |  |  |  |  |  |  |  |
|  | 1 | **D-Wall Construction** |  | 2011-12-24 | 2012-09-03 |  |  |  |  |  |  |  |  |  |  |  |  |
| 823B-CC-A11-DW-1010 |  | D-wall construction completed (5,544m³ conc) | 204d | 2011-12-24 A | 2012-09-03 A | 823B-CC-A10-DW-1010 SS+221d, 823B-AC-0150, 823B-AC-0060, 823B-AC-0095, 823B-AC-0100, 823B-AC-0105, 823B-AC-0110, 823B-AC-0115, 823B-AC-0120, 823B-AC-0125, 823B-AC-0130, 823B-AC-0135, 823B-AC-0140, 823B-AC-0145, 823B-A-PWS-0240, 823B-A-PWS-0140, 823B-A-PWS-0150, 823B-A-PWS-0160, 823B-A-PWS-0170, 823B-A-TWS-0110, 823B-A-PWS-0430 | 100% |  |  | Concrete [5544 Cu m] | 5544 | 100% | 100% | 5544 | m3 | 5544 | 823B_AB |
|  | 2 | **ELS Works** |  | 2012-09-04 | 2013-05-13 |  |  |  |  |  |  |  |  |  |  |  |  |
| 823B-CC-A11-ELS-1010 |  | ELS Stage 1 & 2 (12,760m³) | 56d | 2012-09-04 A | 2012-11-10 A | 823B-CC-A11-DW-1010 | 100% |  |  | Bulk Excavation [12760 Cu m]; Excavation [12760 Cu m] | 12760 | 100% | 100% | 12760 | m3 | 12760 | 823B_AB |
| 823B-CC-A11-ELS-1020 |  | ELS Stage 3 (1,367m³) | 6d | 2012-11-12 A | 2012-11-17 A | 823B-CC-A11-ELS-1010 | 100% |  |  | Bulk Excavation [1367 Cu m]; Excavation [1367 Cu m] | 1367 | 100% | 100% | 1367 | m3 | 1367 | 823B_AB |
| 823B-CC-A11-ELS-1030 |  | ELS Stage 4 (2,735m³) | 12d | 2012-11-19 A | 2012-12-01 A | 823B-CC-A11-ELS-1020 | 100% |  |  | Bulk Excavation [2735 Cu m]; Excavation [2735 Cu m] | 2735 | 100% | 100% | 2735 | m3 | 2735 | 823B_AB |
| 823B-CC-A11-ELS-1040 |  | ELS Stage 5 (14,446m³) | 12d | 2012-12-03 A | 2012-12-24 A | 823B-CC-A11-ELS-1030 | 100% | 2012-12-03 | 2012-12-15 | Bulk Excavation [14446 Cu m]; Excavation [14446 Cu m] | 14446 | 100% | 100% | 14446 | m3 | 14446 | 823B_AB |
| 823B-CC-A11-ELS-1050 |  | ELS Stage 6 (12,038m³) | 10d | 2012-12-27 A | 2013-01-29 A | 823B-CC-A11-ELS-1040 | 100% | 2012-12-17 | 2012-12-29 | Bulk Excavation [12038 Cu m]; Excavation [12038 Cu m] | 12038 | 100% | 100% | 12038 | m3 | 12038 | 823B_AB |
| 823B-CC-A11-ELS-1060 |  | ELS Stage 7 (28,892m³) | 24d | 2013-01-27 A | 2013-03-21 A | 823B-CC-A11-ELS-1050 FS+5d | 100% | 2013-01-07 | 2013-02-02 | Bulk Excavation [28892 Cu m]; Excavation [28892 Cu m] | 28892 | 100% | 100% | 28892 | m3 | 28892 | 823B_AB |
| 823B-CC-A11-ELS-1070 |  | ELS Stage 7 (10,834m³) | 21d | 2013-03-22 A | 2013-05-13 A | 823B-CC-A11-ELS-1060 | 100% | 2013-02-04 | 2013-03-02 | Bulk Excavation [10834 Cu m]; Excavation [10834 Cu m] | 10834 | 100% | 100% | 10834 | m3 | 10834 | 823B_AB |
|  | 3 | **Tunnel Structure** |  | 2013-02-18 | 2014-10-22 |  |  |  |  |  |  |  |  |  |  |  |  |
| 823B-CC-A11-RT-1010 |  | Running Tunnel (Bay RT22) - Base Slab (353m³ conc) | 9d | 2013-02-18 A | 2013-02-28 A | 823B-CC-A11-ELS-1060 | 100% | 2013-02-04 | 2013-02-16 | Concrete [353 Cu m]; Rebar [46 t] | 353 | 100% | 100% | 353 | m3 | 353 | 823B_AB |
| 823B-CC-A11-RT-1020 |  | Running Tunnel (Bay RT22) - Wall (402m³ conc) | 9d | 2013-03-01 A | 2013-03-19 A | 823B-CC-A11-RT-1010 | 100% | 2013-02-18 | 2013-02-27 | Concrete [402 Cu m]; Rebar [53 t] | 402 | 100% | 100% | 402 | m3 | 402 | 823B_AB |
| 823B-CC-A11-RT-1030 |  | Running Tunnel (Bay RT21) - Base Slab (616m³ conc) | 9d | 2013-03-13 A | 2013-03-22 A | 823B-CC-A11-RT-1010 | 100% | 2013-02-18 | 2013-02-27 | Concrete [616 Cu m]; Rebar [81 t] | 616 | 100% | 100% | 616 | m3 | 616 | 823B_AB |
| 823B-CC-A11-RT-1050 |  | Running Tunnel (Bay RT22 & RT21) - Roof (1,409m³ conc) | 24d | 2013-03-18 A | 2013-04-27 A | 823B-CC-A11-RT-1040 FS+6d, 823B-CC-A11-RT-1020 | 100% | 2013-03-18 | 2013-04-18 | Backfilling [960 Cu m]; Concrete [1409 Cu m]; Rebar [123 t] | 1409 | 100% | 100% | 1409 | m3 | 1409 | 823B_AB |
| 823B-CC-A11-RT-1040 |  | Running Tunnel (Bay RT21) - Wall (634m³ conc) | 9d | 2013-03-23 A | 2013-04-20 A | 823B-CC-A11-RT-1030 | 100% | 2013-02-28 | 2013-03-09 | Concrete [634 Cu m]; Rebar [83 t] | 634 | 100% | 100% | 634 | m3 | 634 | 823B_AB |
| 823B-CC-A11-RT-1080 |  | Running Tunnel (Bay RT20) - Base Slab (616m³ conc) | 9d | 2013-03-23 A | 2013-04-10 A | 823B-CC-A11-RT-1030 | 100% | 2013-02-28 | 2013-03-09 | Concrete [616 Cu m]; Rebar [81 t] | 616 | 100% | 100% | 616 | m3 | 616 | 823B_AB |
| 823B-CC-A11-RT-1090 |  | Running Tunnel (Bay RT20) - Wall (624m³ conc) | 9d | 2013-04-08 A | 2013-05-13 A | 823B-CC-A11-RT-1080 | 100% | 2013-03-11 | 2013-03-20 | Concrete [624 Cu m]; Rebar [81 t] | 624 | 100% | 100% | 624 | m3 | 624 | 823B_AB |
| 823B-CC-A11-RT-1130 |  | Running Tunnel (Bay RT19) - Base Slab (616m³ conc) | 9d | 2013-04-30 A | 2013-05-02 A | 823B-CC-A11-RT-1080 | 100% | 2013-03-11 | 2013-03-20 | Concrete [616 Cu m]; Rebar [81 t] | 616 | 100% | 100% | 616 | m3 | 616 | 823B_AB |
| 823B-CC-A11-RT-1150 |  | Running Tunnel (Bay RT19) - Roof (602m³ conc) | 24d | 2013-05-01 A | 2013-06-06 A | 823B-CC-A11-RT-1140, 823B-CC-A11-RT-1100 FS+6d | 100% | 2013-05-27 | 2013-06-24 | Concrete [602 Cu m]; Backfilling [960 Cu m]; Rebar [79 t] | 602 | 100% | 100% | 602 | m3 | 602 | 823B_AB |
| 823B-CC-A11-RT-1140 |  | Running Tunnel (Bay RT19) - Wall (624m³ conc) | 9d | 2013-05-03 A | 2013-05-25 A | 823B-CC-A11-RT-1130 | 100% | 2013-03-21 | 2013-04-03 | Concrete [624 Cu m]; Rebar [82 t] | 624 | 100% | 100% | 624 | m3 | 624 | 823B_AB |
| 823B-CC-A11-RT-1180 |  | Running Tunnel (Bay RT18) - Base Slab (616m³ conc) | 9d | 2013-05-08 A | 2013-05-15 A | 823B-CC-A11-RT-1130, 823B-CC-A11-ELS-1070 | 100% | 2013-03-21 | 2013-04-03 | Concrete [616 Cu m]; Rebar [81 t] | 616 | 100% | 100% | 616 | m3 | 616 | 823B_AB |
| 823B-CC-A11-RT-1100 |  | Running Tunnel (Bay RT20) - Roof (602m³ conc) | 24d | 2013-05-10 A | 2013-05-21 A | 823B-CC-A11-RT-1090, 823B-CC-A11-RT-1060 SS | 100% | 2013-04-19 | 2013-05-18 | Backfilling [960 Cu m]; Concrete [602 Cu m]; Rebar [79 t] | 602 | 100% | 100% | 602 | m3 | 602 | 823B_AB |
| 823B-CC-A11-RT-1190 |  | Running Tunnel (Bay RT18) - Wall (624m³ conc) | 9d | 2013-05-16 A | 2013-06-05 A | 823B-CC-A11-RT-1180 | 100% | 2013-04-05 | 2013-04-15 | Concrete [624 Cu m]; Rebar [82 t] | 624 | 100% | 100% | 624 | m3 | 624 | 823B_AB |
| 823B-CC-A11-RT-1200 |  | Running Tunnel (Bay RT18) - Roof (602m³ conc) | 26d | 2013-05-20 A | 2013-06-15 A | 823B-CC-A11-RT-1190 | 100% | 2013-04-16 | 2013-05-16 | Concrete [602 Cu m]; Backfilling [960 Cu m]; Rebar [79 t] | 602 | 100% | 100% | 602 | m3 | 602 | 823B_AB |
| 823B-CC-A11-RT-1240 |  | Running Tunnel (Bay RT17) - Base Slab (616m³ conc) | 9d | 2013-05-20 A | 2013-05-24 A | 823B-CC-A11-RT-1180, 823B-CC-A11-ELS-1070 | 100% | 2013-04-05 | 2013-04-15 | Concrete [616 Cu m]; Rebar [81 t] | 616 | 100% | 100% | 616 | m3 | 616 | 823B_AB |
| 823B-CC-A11-RT-1250 |  | Running Tunnel (Bay RT17) - Wall (624m³ conc) | 9d | 2013-05-25 A | 2013-06-13 A | 823B-CC-A11-RT-1240 | 100% | 2013-04-16 | 2013-04-25 | Concrete [624 Cu m]; Rebar [82 t] | 624 | 100% | 100% | 624 | m3 | 624 | 823B_AB |
| 823B-CC-A11-RT-1260 |  | Running Tunnel (Bay RT17 - Roof (602m³ conc) | 26d | 2013-05-30 A | 2013-06-25 A | 823B-CC-A11-RT-1250, 823B-CC-A11-RT-1200 SS+14d | 100% | 2013-05-03 | 2013-06-03 | Concrete [602 Cu m]; Backfilling [960 Cu m]; Rebar [79 t] | 602 | 100% | 100% | 602 | m3 | 602 | 823B_AB |
| 823B-CC-A11-RT-1060 |  | Approach Tunnel (Bay RT22 & RT21) - Structure (1,150m³ conc) | 33d | 2013-06-01 A | 2013-11-27 A | 823B-CC-A11-RT-1050 | 100% | 2013-04-19 | 2013-05-29 | Concrete [1150 Cu m]; Rebar [150 t] | 1150 | 100% | 100% | 1150 | m3 | 1150 | 823B_AB |
| 823B-CC-A11-RT-1233 |  | Running Tunnel (Bay RT22 to RT18) - Cable bracket installation | 24d | 2013-06-18 A | 2013-07-08 A | 823B-CC-A11-RT-1232 SS+12d | 100% | 2013-07-08 | 2013-08-03 |  |  | 100% | 100% |  |  |  | 823B_AB |
| 823B-CC-A11-RT-1110 |  | Approach Tunnel (Bay RT20) - Structure (1,110m³ conc) | 33d | 2013-07-02 A | 2014-01-13 A | 823B-CC-A11-RT-1100, 823B-CC-A11-RT-1070 SS | 100% | 2013-05-30 | 2013-07-09 | Concrete [1110 Cu m]; Rebar [111 t] | 1110 | 100% | 100% | 1110 | m3 | 1110 | 823B_AB |
| 823B-CC-A11-RT-1310 |  | Running Tunnel (Bay RT17) - Cable bracket installation | 6d | 2013-07-03 A | 2013-07-08 A | 823B-CC-A10-RT-1242, 823B-CC-A11-RT-1300 SS | 100% | 2013-07-29 | 2013-08-03 |  |  | 100% | 100% |  |  |  | 823B_AB |
| 823B-CC-A11-RT-1160 |  | Approach Tunnel (Bay RT19) - Structure (1,110m³ conc) | 33d | 2013-07-15 A | 2014-01-20 A | 823B-CC-A11-RT-1150, 823B-CC-A11-RT-1120 SS | 100% | 2013-07-10 | 2013-08-16 | Concrete [1110 Cu m]; Rebar [111 t] | 1110 | 100% | 100% | 1110 | m3 | 1110 | 823B_AB |
| 823B-CC-A11-RT-1232 |  | Running Tunnel (Bay RT22 to RT18) - Mass concrete (invert & walkway) | 24d | 2013-07-15 A | 2013-09-12 A | 823B-CC-A11-RT-1050, 823B-CC-A11-RT-1070 SS+19d, 823B-CC-A11-RT-1100, 823B-CC-A11-RT-1150 SS+22d, 823B-CC-A11-RT-1200 | 100% | 2013-06-22 | 2013-07-20 |  |  | 100% | 100% |  |  |  | 823B_AB |
| 823B-CC-A11-RT-1210 |  | Approach Tunnel (Bay RT18) - Intermediate Wall (680m³ conc) | 18d | 2013-08-01 A | 2013-11-01 A | 823B-CC-A11-RT-1200, 823B-CC-A11-RT-1150 SS | 100% | 2013-05-27 | 2013-06-17 | Concrete [680 Cu m]; Rebar [55 t] | 680 | 100% | 100% | 680 | m3 | 680 | 823B_AB |
| 823B-CC-A11-RT-1270 |  | Approach Tunnel (Bay RT17) - Intermediate Wall (680m³ conc) | 18d | 2013-08-01 A | 2013-11-09 A | 823B-CC-A11-RT-1260 FS+6d | 100% | 2013-06-11 | 2013-07-03 | Concrete [680 Cu m]; Rebar [55 t] | 680 | 100% | 100% | 680 | m3 | 680 | 823B_AB |
| 823B-CC-A11-RT-1300 |  | Running Tunnel (Bay RT17) - Mass concrete (invert & walkway) | 6d | 2013-09-10 A | 2013-09-16 A | 823B-CC-A10-RT-1241, 823B-CC-A11-RT-1280 SS | 100% | 2013-07-15 | 2013-07-20 |  |  | 100% | 100% |  |  |  | 823B_AB |
| 823B-CC-A11-RT-1235 |  | Approach Tunnel (Bay RT22 to RT18) - Mass concrete (invert & walkway) | 34d | 2013-09-30 A | 2014-01-25 A | 823B-CC-A11-RT-1070, 823B-CC-A11-RT-1120, 823B-CC-A11-RT-1160 SS, 823B-CC-A11-RT-1220 SS | 100% | 2013-08-12 | 2013-09-19 |  |  | 100% | 100% |  |  |  | 823B_AB |
| 823B-CC-A11-RT-1280 |  | Approach Tunnel (Bay RT17) - Structure (432m³ conc) | 54d | 2013-11-01 A | 2014-01-24 A | 823B-CC-A11-RT-1270 | 100% | 2013-07-04 | 2013-09-04 | Concrete [432 Cu m]; Rebar [56 t] | 432 | 100% | 100% | 432 | m3 | 432 | 823B_AB |
| 823B-CC-A11-RT-1220 |  | Approach Tunnel (Bay RT18) - Structure (430m³ conc) | 54d | 2013-11-04 A | 2014-01-28 A | 823B-CC-A11-RT-1210 | 100% | 2013-06-18 | 2013-08-20 | Concrete [430 Cu m]; Rebar [56 t] | 430 | 100% | 100% | 430 | m3 | 430 | 823B_AB |
| 823B-CC-A11-RT-1070 |  | Approach Tunnel (Bay RT22 & RT21) - Backfilling (10,270m³ backfill) | 28d | 2013-11-05 A | 2014-03-19 A | 823B-CC-A11-RT-1060 | 100% | 2013-05-30 | 2013-07-03 | Backfilling [10270 Cu m]; Concrete [358 Cu m] | 10270 | 100% | 100% | 10270 | m3 | 10270 | 823B_AB |
| 823B-CC-A11-RT-1120 |  | Approach Tunnel (Bay RT20) - Backfilling (6,782m³ backfill) | 28d | 2013-11-08 A | 2014-03-19 A | 823B-CC-A11-RT-1110 | 100% | 2013-07-10 | 2013-08-10 | Backfilling [6782 Cu m]; Concrete [256 Cu m] | 6782 | 100% | 100% | 6782 | m3 | 6782 | 823B_AB |
| 823B-CC-A11-RT-1170 |  | Approach Tunnel (Bay RT19) - Backfilling (6,782m³ backfill) | 28d | 2013-11-12 A | 2014-03-19 A | 823B-CC-A11-RT-1160 | 100% | 2013-08-17 | 2013-09-18 | Backfilling [6782 Cu m]; Concrete [256 Cu m] | 6782 | 100% | 100% | 6782 | m3 | 6782 | 823B_AB |
| 823B-CC-A11-RT-1230 |  | Approach Tunnel (Bay RT18) - Backfilling (6,782m³ backfill) | 28d | 2013-11-15 A | 2014-03-17 A | 823B-CC-A11-RT-1220 | 100% | 2013-08-21 | 2013-09-23 | Backfilling [6782 Cu m]; Concrete [256 Cu m] | 6782 | 100% | 100% | 6782 | m3 | 6782 | 823B_AB |
| 823B-CC-A11-RT-1290 |  | Approach Tunnel (Bay RT17) - Backfilling (6,782m³ backfill) | 25d | 2014-03-01 A | 2014-03-29 A | 823B-CC-A11-RT-1280 | 100% |  |  | Backfilling [6782 Cu m]; Concrete [256 Cu m] | 6782 | 100% | 100% | 6782 | m3 | 6782 | 823B_AB |
| 823B-CC-A11-RT-1320 |  | Approach Tunnel (Bay RT17) - Mass concrete (invert & walkway) | 6d | 2014-03-03 A | 2014-06-14 A | 823B-CC-A10-RT-1245, 823B-CC-A11-RT-1290 SS | 100% | 2014-04-14 | 2014-04-23 |  |  | 100% | 100% |  |  |  | 823B_AB |
| 823B-CC-A11-RT-1236 |  | Approach Tunnel (Bay RT22 to RT18) - Cable bracket installation | 34d | 2014-07-02 A | 2014-10-22 A | 823B-CC-A11-RT-1235 SS+12d | 100% | 2014-07-02 | 2014-08-09 |  |  | 100% | 100% |  |  |  | 823B_AB |
| 823B-CC-A11-RT-1330 |  | Approach Tunnel (Bay RT17) - Cable bracket installation | 6d | 2014-07-09 A | 2014-10-13 A | 823B-CC-A10-RT-1246, 823B-CC-A11-RT-1320 SS | 100% | 2014-07-09 | 2014-07-15 |  |  | 100% | 100% |  |  |  | 823B_AB |

| ID | WBS | Activity | Duration | Start | Finish | Predecessors | Complete | Resources | user_text4 | user_text6 | user_text7 | user_integer1 | user_text1 | user_text5 | 823B_As-built |
| --- | --- | --- | --- | --- | --- | --- | --- | --- | --- | --- | --- | --- | --- | --- | --- |
|  | E | **RUNNING MAINTENANCE SHED (RMS)** |  | 2012-01-09 | 2015-11-11 |  |  |  |  |  |  |  |  |  |  |
|  | 1 | **STRUCTURE** |  | 2012-01-09 | 2013-05-31 |  |  |  |  |  |  |  |  |  |  |
|  | 1 | **RMS - Stage 1** |  | 2012-01-09 | 2012-09-15 |  |  |  |  |  |  |  |  |  |  |
|  | 1 | **Footing Excavation** |  | 2012-01-09 | 2012-02-21 |  |  |  |  |  |  |  |  |  |  |
| 823B-E-RMS1-1010 |  | Bay 1-2 (348m³) | 5d | 2012-01-09 A | 2012-01-13 A | 823B-SFE-1010 | 100% | Excavation [348 Cu m] | 348 | 100% | 100% | 348 | m3 | 348 | 823B_AB |
| 823B-E-RMS1-1020 |  | Bay 3-4 (348m³) | 5d | 2012-01-14 A | 2012-01-19 A | 823B-E-RMS1-1010 | 100% | Excavation [348 Cu m] | 348 | 100% | 100% | 348 | m3 | 348 | 823B_AB |
| 823B-E-RMS1-1030 |  | Bay 5-6 (348m³) | 5d | 2012-01-20 A | 2012-01-28 A | 823B-E-RMS1-1020 | 100% | Excavation [348 Cu m] | 348 | 100% | 100% | 348 | m3 | 348 | 823B_AB |
| 823B-E-RMS1-1040 |  | Bay 7-8 (348m³) | 5d | 2012-01-30 A | 2012-02-03 A | 823B-E-RMS1-1030 | 100% | Excavation [348 Cu m] | 348 | 100% | 100% | 348 | m3 | 348 | 823B_AB |
| 823B-E-RMS1-1050 |  | Bay 9-10 (348m³) | 5d | 2012-02-04 A | 2012-02-09 A | 823B-E-RMS1-1040 | 100% | Excavation [348 Cu m] | 348 | 100% | 100% | 348 | m3 | 348 | 823B_AB |
| 823B-E-RMS1-1060 |  | Bay 11-12 (348m³) | 5d | 2012-02-10 A | 2012-02-15 A | 823B-E-RMS1-1050 | 100% | Excavation [348 Cu m] | 348 | 100% | 100% | 348 | m3 | 348 | 823B_AB |
| 823B-E-RMS1-1070 |  | Bay 13-14 (348m³) | 5d | 2012-02-16 A | 2012-02-21 A | 823B-E-RMS1-1060 | 100% | Excavation [348 Cu m] | 348 | 100% | 100% | 348 | m3 | 348 | 823B_AB |
|  | 2 | **Footing Construction** |  | 2012-01-14 | 2012-03-03 |  |  |  |  |  |  |  |  |  |  |
| 823B-E-RMS1-1080 |  | Bay 1-2 (118m³) | 10d | 2012-01-14 A | 2012-01-28 A | 823B-E-RMS1-1010 | 100% | Concrete [118 Cu m]; Rebar [16 t]; Concrete (Buildings & External) [118 Cu m] | 118 | 100% | 100% | 118 | m3 | 118 | 823B_AB |
| 823B-E-RMS1-1090 |  | Bay 3-4 (155m³) | 10d | 2012-01-20 A | 2012-02-03 A | 823B-E-RMS1-1020 | 100% | Concrete [155 Cu m]; Rebar [21 t]; Concrete (Buildings & External) [155 Cu m] | 155 | 100% | 100% | 155 | m3 | 155 | 823B_AB |
| 823B-E-RMS1-1100 |  | Bay 5-6 (155m³) | 10d | 2012-01-30 A | 2012-02-09 A | 823B-E-RMS1-1030 | 100% | Concrete [155 Cu m]; Rebar [21 t]; Concrete (Buildings & External) [155 Cu m] | 155 | 100% | 100% | 155 | m3 | 155 | 823B_AB |
| 823B-E-RMS1-1110 |  | Bay 7-8 (155m³) | 10d | 2012-02-04 A | 2012-02-15 A | 823B-E-RMS1-1040 | 100% | Concrete [155 Cu m]; Rebar [21 t]; Concrete (Buildings & External) [155 Cu m] | 155 | 100% | 100% | 155 | m3 | 155 | 823B_AB |
| 823B-E-RMS1-1120 |  | Bay 9-10 (155m³) | 10d | 2012-02-10 A | 2012-02-21 A | 823B-E-RMS1-1050 | 100% | Concrete [155 Cu m]; Rebar [21 t]; Concrete (Buildings & External) [155 Cu m] | 155 | 100% | 100% | 155 | m3 | 155 | 823B_AB |
| 823B-E-RMS1-1130 |  | Bay 11-12 (155m³) | 10d | 2012-02-16 A | 2012-02-27 A | 823B-E-RMS1-1060 | 100% | Concrete [155 Cu m]; Rebar [21 t]; Concrete (Buildings & External) [155 Cu m] | 155 | 100% | 100% | 155 | m3 | 155 | 823B_AB |
| 823B-E-RMS1-1140 |  | Bay 13-14 (155m³) | 10d | 2012-02-22 A | 2012-03-03 A | 823B-E-RMS1-1070 | 100% | Concrete [155 Cu m]; Rebar [21 t]; Concrete (Buildings & External) [155 Cu m] | 155 | 100% | 100% | 155 | m3 | 155 | 823B_AB |
|  | 3 | **Column from +12.05 to +13.85** |  | 2012-01-30 | 2012-03-10 |  |  |  |  |  |  |  |  |  |  |
| 823B-E-RMS1-1150 |  | Bay 1-2 (6m³) | 6d | 2012-01-30 A | 2012-02-04 A | 823B-E-RMS1-1080 | 100% | Concrete [6 Cu m]; Concrete (Buildings & External) [6 Cu m]; Rebar [11 t] | 6 | 100% | 100% | 6 | m3 | 6 | 823B_AB |
| 823B-E-RMS1-1160 |  | Bay 3-4 (11m³) | 6d | 2012-02-04 A | 2012-02-10 A | 823B-E-RMS1-1090 | 100% | Concrete [11 Cu m]; Concrete (Buildings & External) [11 Cu m]; Rebar [2 t] | 11 | 100% | 100% | 11 | m3 | 11 | 823B_AB |
| 823B-E-RMS1-1170 |  | Bay 5-6 (11m³) | 6d | 2012-02-10 A | 2012-02-16 A | 823B-E-RMS1-1100 | 100% | Concrete [11 Cu m]; Concrete (Buildings & External) [11 Cu m]; Rebar [2 t] | 11 | 100% | 100% | 11 | m3 | 11 | 823B_AB |
| 823B-E-RMS1-1180 |  | Bay 7-8 (11m³) | 6d | 2012-02-16 A | 2012-02-22 A | 823B-E-RMS1-1110 | 100% | Concrete [11 Cu m]; Concrete (Buildings & External) [11 Cu m]; Rebar [2 t] | 11 | 100% | 100% | 11 | m3 | 11 | 823B_AB |
| 823B-E-RMS1-1190 |  | Bay 9-10 (11m³) | 6d | 2012-02-22 A | 2012-02-28 A | 823B-E-RMS1-1120 | 100% | Concrete [11 Cu m]; Concrete (Buildings & External) [11 Cu m]; Rebar [2 t] | 11 | 100% | 100% | 11 | m3 | 11 | 823B_AB |
| 823B-E-RMS1-1200 |  | Bay 11-12 (11m³) | 6d | 2012-02-28 A | 2012-03-05 A | 823B-E-RMS1-1130 | 100% | Concrete [11 Cu m]; Concrete (Buildings & External) [11 Cu m]; Rebar [2 t] | 11 | 100% | 100% | 11 | m3 | 11 | 823B_AB |
| 823B-E-RMS1-1210 |  | Bay 13-14 (11m³) | 6d | 2012-03-05 A | 2012-03-10 A | 823B-E-RMS1-1140 | 100% | Concrete [11 Cu m]; Concrete (Buildings & External) [11 Cu m]; Rebar [2 t] | 11 | 100% | 100% | 11 | m3 | 11 | 823B_AB |

| ID | WBS | Activity | Duration | Start | Finish | Predecessors | Complete | Constraint | Resources | user_text4 | user_text6 | user_text7 | user_integer1 | user_text1 | user_text5 | 823B_As-built |
| --- | --- | --- | --- | --- | --- | --- | --- | --- | --- | --- | --- | --- | --- | --- | --- | --- |
|  | 4 | **Ground Floor Slab and Underground Utilities** |  | 2012-06-01 | 2012-09-08 |  |  |  |  |  |  |  |  |  |  |  |
| 823B-E-RMS1-1220 |  | Bay 1-2 (162m³) | 12d | 2012-06-01 A | 2012-06-14 A | 823B-E-RMS1-1150 | 100% | start on 2012-06-01 | Concrete [162 Cu m]; Concrete (Buildings & External) [162 Cu m]; Rebar [22 t] | 162 | 100% | 100% | 162 | m3 | 162 | 823B_AB |
| 823B-E-RMS1-1230 |  | Bay 3-4 (162m³) | 12d | 2012-06-15 A | 2012-06-29 A | 823B-E-RMS1-1220, 823B-E-RMS1-1160 | 100% |  | Concrete [162 Cu m]; Concrete (Buildings & External) [162 Cu m]; Rebar [22 t] | 162 | 100% | 100% | 162 | m3 | 162 | 823B_AB |
| 823B-E-RMS1-1240 |  | Bay 5-6 (162m³) | 12d | 2012-06-30 A | 2012-07-14 A | 823B-E-RMS1-1230, 823B-E-RMS1-1170 | 100% |  | Concrete [162 Cu m]; Concrete (Buildings & External) [162 Cu m]; Rebar [22 t] | 162 | 100% | 100% | 162 | m3 | 162 | 823B_AB |
| 823B-E-RMS1-1250 |  | Bay 7-8 (162m³) | 12d | 2012-07-16 A | 2012-07-28 A | 823B-E-RMS1-1240, 823B-E-RMS1-1180 | 100% |  | Concrete [162 Cu m]; Concrete (Buildings & External) [162 Cu m]; Rebar [22 t] | 162 | 100% | 100% | 162 | m3 | 162 | 823B_AB |
| 823B-E-RMS1-1260 |  | Bay 9-10 (162m³) | 12d | 2012-07-30 A | 2012-08-11 A | 823B-E-RMS1-1250, 823B-E-RMS1-1190 | 100% |  | Concrete [162 Cu m]; Concrete (Buildings & External) [162 Cu m]; Rebar [22 t] | 162 | 100% | 100% | 162 | m3 | 162 | 823B_AB |
| 823B-E-RMS1-1270 |  | Bay 11-12 (162m³) | 12d | 2012-08-13 A | 2012-08-25 A | 823B-E-RMS1-1260, 823B-E-RMS1-1200 | 100% |  | Concrete [162 Cu m]; Concrete (Buildings & External) [162 Cu m]; Rebar [22 t] | 162 | 100% | 100% | 162 | m3 | 162 | 823B_AB |
| 823B-E-RMS1-1280 |  | Bay 13-14 (162m³) | 12d | 2012-08-27 A | 2012-09-08 A | 823B-E-RMS1-1270, 823B-E-RMS1-1210 | 100% |  | Concrete [162 Cu m]; Concrete (Buildings & External) [162 Cu m]; Rebar [22 t] | 162 | 100% | 100% | 162 | m3 | 162 | 823B_AB |
|  | 5 | **Column from +13.85 to Roof Soffit** |  | 2012-06-15 | 2012-09-15 |  |  |  |  |  |  |  |  |  |  |  |
| 823B-E-RMS1-1290 |  | Bay 1-2 (28m³) | 6d | 2012-06-15 A | 2012-06-21 A | 823B-E-RMS1-1220 | 100% |  | Concrete [28 Cu m]; Concrete (Buildings & External) [28 Cu m]; Rebar [6 t] | 28 | 100% | 100% | 28 | m3 | 28 | 823B_AB |
| 823B-E-RMS1-1300 |  | Bay 3-4 (55m³) | 6d | 2012-06-30 A | 2012-07-07 A | 823B-E-RMS1-1290, 823B-E-RMS1-1230 | 100% |  | Concrete [55 Cu m]; Concrete (Buildings & External) [55 Cu m]; Rebar [11 t] | 55 | 100% | 100% | 55 | m3 | 55 | 823B_AB |
| 823B-E-RMS1-1310 |  | Bay 5-6 (55m³) | 6d | 2012-07-16 A | 2012-07-21 A | 823B-E-RMS1-1300, 823B-E-RMS1-1240 | 100% |  | Concrete [55 Cu m]; Concrete (Buildings & External) [55 Cu m]; Rebar [11 t] | 55 | 100% | 100% | 55 | m3 | 55 | 823B_AB |
| 823B-E-RMS1-1320 |  | Bay 7-8 (55m³) | 6d | 2012-07-30 A | 2012-08-04 A | 823B-E-RMS1-1310, 823B-E-RMS1-1250 | 100% |  | Concrete [55 Cu m]; Concrete (Buildings & External) [55 Cu m]; Rebar [11 t] | 55 | 100% | 100% | 55 | m3 | 55 | 823B_AB |
| 823B-E-RMS1-1330 |  | Bay 9-10 (55m³) | 6d | 2012-08-13 A | 2012-08-18 A | 823B-E-RMS1-1320, 823B-E-RMS1-1260 | 100% |  | Concrete [55 Cu m]; Concrete (Buildings & External) [55 Cu m]; Rebar [11 t] | 55 | 100% | 100% | 55 | m3 | 55 | 823B_AB |
| 823B-E-RMS1-1340 |  | Bay 11-12 (55m³) | 6d | 2012-08-27 A | 2012-09-01 A | 823B-E-RMS1-1330, 823B-E-RMS1-1270 | 100% |  | Concrete [55 Cu m]; Concrete (Buildings & External) [55 Cu m]; Rebar [11 t] | 55 | 100% | 100% | 55 | m3 | 55 | 823B_AB |
| 823B-E-RMS1-1350 |  | Bay 13-14 (55m³) | 6d | 2012-09-10 A | 2012-09-15 A | 823B-E-RMS1-1340, 823B-E-RMS1-1280 | 100% |  | Concrete [55 Cu m]; Concrete (Buildings & External) [55 Cu m]; Rebar [11 t] | 55 | 100% | 100% | 55 | m3 | 55 | 823B_AB |
|  | 2 | **RMS - Stage 2** |  | 2012-05-02 | 2012-09-08 |  |  |  |  |  |  |  |  |  |  |  |
|  | 1 | **Footing Excavation** |  | 2012-05-02 | 2012-06-13 |  |  |  |  |  |  |  |  |  |  |  |
| 823B-E-RMS2-1010 |  | Bay 15-16 (348m³) | 5d | 2012-05-02 A | 2012-05-07 A | 823B-SFE-1010 | 100% |  | Excavation [348 Cu m] | 348 | 100% | 100% | 348 | m3 | 348 | 823B_AB |
| 823B-E-RMS2-1020 |  | Bay 17-18 (348m³) | 5d | 2012-05-08 A | 2012-05-12 A | 823B-E-RMS2-1010 | 100% |  | Excavation [348 Cu m] | 348 | 100% | 100% | 348 | m3 | 348 | 823B_AB |
| 823B-E-RMS2-1030 |  | Bay 19-20 (348m³) | 5d | 2012-05-14 A | 2012-05-18 A | 823B-E-RMS2-1020 | 100% |  | Excavation [348 Cu m] | 348 | 100% | 100% | 348 | m3 | 348 | 823B_AB |
| 823B-E-RMS2-1040 |  | Bay 21-22 (348m³) | 5d | 2012-05-19 A | 2012-05-24 A | 823B-E-RMS2-1030 | 100% |  | Excavation [348 Cu m] | 348 | 100% | 100% | 348 | m3 | 348 | 823B_AB |
| 823B-E-RMS2-1050 |  | Bay 23-24 (348m³) | 5d | 2012-05-25 A | 2012-05-31 A | 823B-E-RMS2-1040 | 100% |  | Excavation [348 Cu m] | 348 | 100% | 100% | 348 | m3 | 348 | 823B_AB |
| 823B-E-RMS2-1060 |  | Bay 25-26 (348m³) | 5d | 2012-06-01 A | 2012-06-06 A | 823B-E-RMS2-1050 | 100% |  | Excavation [348 Cu m] | 348 | 100% | 100% | 348 | m3 | 348 | 823B_AB |
| 823B-E-RMS2-1070 |  | Bay 27-28 (348m³) | 6d | 2012-06-07 A | 2012-06-13 A | 823B-E-RMS2-1060 | 100% |  | Excavation [348 Cu m] | 348 | 100% | 100% | 348 | m3 | 348 | 823B_AB |

| ID | WBS | Activity | Duration | Start | Finish | Predecessors | Complete | Resources | user_text4 | user_text6 | user_text7 | user_integer1 | user_text1 | user_text5 | 823B_As-built |
| --- | --- | --- | --- | --- | --- | --- | --- | --- | --- | --- | --- | --- | --- | --- | --- |
|  | 2 | **Footing Construction** |  | 2012-05-08 | 2012-06-26 |  |  |  |  |  |  |  |  |  |  |
| 823B-E-RMS2-1080 |  | Bay 15-16 (155m³) | 10d | 2012-05-08 A | 2012-05-18 A | 823B-E-RMS2-1010 | 100% | Concrete [155 Cu m]; Concrete (Buildings & External) [155 Cu m]; Rebar [21 t] | 155 | 100% | 100% | 155 | m3 | 155 | 823B_AB |
| 823B-E-RMS2-1090 |  | Bay 17-18 (155m³) | 10d | 2012-05-14 A | 2012-05-24 A | 823B-E-RMS2-1020 | 100% | Concrete [155 Cu m]; Concrete (Buildings & External) [155 Cu m]; Rebar [21 t] | 155 | 100% | 100% | 155 | m3 | 155 | 823B_AB |
| 823B-E-RMS2-1100 |  | Bay 19-20 (155m³) | 10d | 2012-05-19 A | 2012-05-31 A | 823B-E-RMS2-1030 | 100% | Concrete [155 Cu m]; Concrete (Buildings & External) [155 Cu m]; Rebar [21 t] | 155 | 100% | 100% | 155 | m3 | 155 | 823B_AB |
| 823B-E-RMS2-1110 |  | Bay 21-22 (155m³) | 11d | 2012-05-24 A | 2012-06-06 A | 823B-E-RMS2-1040 | 100% | Concrete [155 Cu m]; Concrete (Buildings & External) [155 Cu m]; Rebar [21 t] | 155 | 100% | 100% | 155 | m3 | 155 | 823B_AB |
| 823B-E-RMS2-1120 |  | Bay 23-24 (155m³) | 10d | 2012-05-31 A | 2012-06-11 A | 823B-E-RMS2-1050 | 100% | Concrete [155 Cu m]; Concrete (Buildings & External) [155 Cu m]; Rebar [21 t] | 155 | 100% | 100% | 155 | m3 | 155 | 823B_AB |
| 823B-E-RMS2-1130 |  | Bay 25-26 (155m³) | 10d | 2012-06-07 A | 2012-06-18 A | 823B-E-RMS2-1060 | 100% | Concrete [155 Cu m]; Concrete (Buildings & External) [155 Cu m]; Rebar [21 t] | 155 | 100% | 100% | 155 | m3 | 155 | 823B_AB |
| 823B-E-RMS2-1140 |  | Bay 27-28 (155m³) | 10d | 2012-06-14 A | 2012-06-26 A | 823B-E-RMS2-1070 | 100% | Concrete [155 Cu m]; Concrete (Buildings & External) [155 Cu m]; Rebar [21 t] | 155 | 100% | 100% | 155 | m3 | 155 | 823B_AB |
|  | 3 | **Column from +12.05 to +13.85** |  | 2012-05-19 | 2012-07-04 |  |  |  |  |  |  |  |  |  |  |
| 823B-E-RMS2-1150 |  | Bay 15-16 (11m³) | 6d | 2012-05-19 A | 2012-05-25 A | 823B-E-RMS2-1080 | 100% | Concrete [11 Cu m]; Concrete (Buildings & External) [11 Cu m]; Rebar [2 t] | 11 | 100% | 100% | 11 | m3 | 11 | 823B_AB |
| 823B-E-RMS2-1160 |  | Bay 17-18 (11m³) | 6d | 2012-05-25 A | 2012-06-01 A | 823B-E-RMS2-1090 | 100% | Concrete [11 Cu m]; Concrete (Buildings & External) [11 Cu m]; Rebar [2 t] | 11 | 100% | 100% | 11 | m3 | 11 | 823B_AB |
| 823B-E-RMS2-1170 |  | Bay 19-20 (11m³) | 6d | 2012-05-31 A | 2012-06-06 A | 823B-E-RMS2-1100 | 100% | Concrete [11 Cu m]; Concrete (Buildings & External) [11 Cu m]; Rebar [2 t] | 11 | 100% | 100% | 11 | m3 | 11 | 823B_AB |
| 823B-E-RMS2-1180 |  | Bay 21-22 (11m³) | 6d | 2012-06-07 A | 2012-06-13 A | 823B-E-RMS2-1110 | 100% | Concrete [11 Cu m]; Concrete (Buildings & External) [11 Cu m]; Rebar [2 t] | 11 | 100% | 100% | 11 | m3 | 11 | 823B_AB |
| 823B-E-RMS2-1190 |  | Bay 23-24 (11m³) | 6d | 2012-06-12 A | 2012-06-18 A | 823B-E-RMS2-1120 | 100% | Concrete [11 Cu m]; Concrete (Buildings & External) [11 Cu m]; Rebar [2 t] | 11 | 100% | 100% | 11 | m3 | 11 | 823B_AB |
| 823B-E-RMS2-1200 |  | Bay 25-26 (11m³) | 6d | 2012-06-19 A | 2012-06-26 A | 823B-E-RMS2-1130 | 100% | Concrete [11 Cu m]; Concrete (Buildings & External) [11 Cu m]; Rebar [2 t] | 11 | 100% | 100% | 11 | m3 | 11 | 823B_AB |
| 823B-E-RMS2-1210 |  | Bay 27-28 (11m³) | 6d | 2012-06-27 A | 2012-07-04 A | 823B-E-RMS2-1140 | 100% | Concrete [11 Cu m]; Concrete (Buildings & External) [11 Cu m]; Rebar [2 t] | 11 | 100% | 100% | 11 | m3 | 11 | 823B_AB |
|  | 4 | **Ground Floor Slab and Underground Utilities** |  | 2012-05-26 | 2012-09-01 |  |  |  |  |  |  |  |  |  |  |
| 823B-E-RMS2-1220 |  | Bay 15-16 (162m³) | 11d | 2012-05-26 A | 2012-06-08 A | 823B-E-RMS2-1150 | 100% | Concrete [162 Cu m]; Concrete (Buildings & External) [162 Cu m]; Rebar [22 t] | 162 | 100% | 100% | 162 | m3 | 162 | 823B_AB |
| 823B-E-RMS2-1230 |  | Bay 17-18 (162m³) | 12d | 2012-06-09 A | 2012-06-22 A | 823B-E-RMS2-1220, 823B-E-RMS2-1160 | 100% | Concrete [162 Cu m]; Concrete (Buildings & External) [162 Cu m]; Rebar [22 t] | 162 | 100% | 100% | 162 | m3 | 162 | 823B_AB |
| 823B-E-RMS2-1240 |  | Bay 19-20 (162m³) | 11d | 2012-06-25 A | 2012-07-07 A | 823B-E-RMS2-1230, 823B-E-RMS2-1170 | 100% | Concrete [162 Cu m]; Concrete (Buildings & External) [162 Cu m]; Rebar [22 t] | 162 | 100% | 100% | 162 | m3 | 162 | 823B_AB |
| 823B-E-RMS2-1250 |  | Bay 21-22 (162m³) | 12d | 2012-07-09 A | 2012-07-21 A | 823B-E-RMS2-1240, 823B-E-RMS2-1180 | 100% | Concrete [162 Cu m]; Concrete (Buildings & External) [162 Cu m]; Rebar [22 t] | 162 | 100% | 100% | 162 | m3 | 162 | 823B_AB |
| 823B-E-RMS2-1260 |  | Bay 23-24 (162m³) | 12d | 2012-07-23 A | 2012-08-04 A | 823B-E-RMS2-1250, 823B-E-RMS2-1190 | 100% | Concrete [162 Cu m]; Concrete (Buildings & External) [162 Cu m]; Rebar [22 t] | 162 | 100% | 100% | 162 | m3 | 162 | 823B_AB |
| 823B-E-RMS2-1270 |  | Bay 25-26 (162m³) | 12d | 2012-08-06 A | 2012-08-18 A | 823B-E-RMS2-1260, 823B-E-RMS2-1200 | 100% | Concrete [162 Cu m]; Concrete (Buildings & External) [162 Cu m]; Rebar [22 t] | 162 | 100% | 100% | 162 | m3 | 162 | 823B_AB |
| 823B-E-RMS2-1280 |  | Bay 27-28 (162m³) | 12d | 2012-08-20 A | 2012-09-01 A | 823B-E-RMS2-1270, 823B-E-RMS2-1210 | 100% | Concrete [162 Cu m]; Concrete (Buildings & External) [162 Cu m]; Rebar [22 t] | 162 | 100% | 100% | 162 | m3 | 162 | 823B_AB |

| ID | WBS | Activity | Duration | Start | Finish | Predecessors | Complete | Resources | user_text4 | user_text6 | user_text7 | user_integer1 | user_text1 | user_text5 | 823B_As-built |
| --- | --- | --- | --- | --- | --- | --- | --- | --- | --- | --- | --- | --- | --- | --- | --- |
|  | 5 | **Column from +13.85 to Roof Soffit** |  | 2012-06-09 | 2012-09-08 |  |  |  |  |  |  |  |  |  |  |
| 823B-E-RMS2-1290 |  | Bay 15-16 (55m³) | 6d | 2012-06-09 A | 2012-06-15 A | 823B-E-RMS2-1220 | 100% | Concrete [55 Cu m]; Concrete (Buildings & External) [55 Cu m]; Rebar [11 t] | 55 | 100% | 100% | 55 | m3 | 55 | 823B_AB |
| 823B-E-RMS2-1300 |  | Bay 17-18 (55m³) | 6d | 2012-06-25 A | 2012-06-30 A | 823B-E-RMS2-1230 | 100% | Concrete [55 Cu m]; Concrete (Buildings & External) [55 Cu m]; Rebar [11 t] | 55 | 100% | 100% | 55 | m3 | 55 | 823B_AB |
| 823B-E-RMS2-1310 |  | Bay 19-20 (55m³) | 6d | 2012-07-09 A | 2012-07-14 A | 823B-E-RMS2-1240 | 100% | Concrete [55 Cu m]; Concrete (Buildings & External) [55 Cu m]; Rebar [11 t] | 55 | 100% | 100% | 55 | m3 | 55 | 823B_AB |
| 823B-E-RMS2-1320 |  | Bay 21-22 (55m³) | 6d | 2012-07-23 A | 2012-07-28 A | 823B-E-RMS2-1250 | 100% | Concrete [55 Cu m]; Concrete (Buildings & External) [55 Cu m]; Rebar [11 t] | 55 | 100% | 100% | 55 | m3 | 55 | 823B_AB |
| 823B-E-RMS2-1330 |  | Bay 23-24 (55m³) | 6d | 2012-08-06 A | 2012-08-11 A | 823B-E-RMS2-1260 | 100% | Concrete [55 Cu m]; Concrete (Buildings & External) [55 Cu m]; Rebar [11 t] | 55 | 100% | 100% | 55 | m3 | 55 | 823B_AB |
| 823B-E-RMS2-1340 |  | Bay 25-26 (55m³) | 6d | 2012-08-20 A | 2012-08-25 A | 823B-E-RMS2-1270 | 100% | Concrete [55 Cu m]; Concrete (Buildings & External) [55 Cu m]; Rebar [11 t] | 55 | 100% | 100% | 55 | m3 | 55 | 823B_AB |
| 823B-E-RMS2-1350 |  | Bay 27-28 (55m³) | 6d | 2012-09-03 A | 2012-09-08 A | 823B-E-RMS2-1280 | 100% | Concrete [55 Cu m]; Concrete (Buildings & External) [55 Cu m]; Rebar [11 t] | 55 | 100% | 100% | 55 | m3 | 55 | 823B_AB |
|  | 3 | **RMS - Stage 3** |  | 2012-06-12 | 2012-12-19 |  |  |  |  |  |  |  |  |  |  |
|  | 1 | **Footing Excavation** |  | 2012-06-12 | 2012-08-20 |  |  |  |  |  |  |  |  |  |  |
| 823B-E-RMS3-1010 |  | Bay 29-30 (348m³) | 6d | 2012-06-12 A | 2012-06-18 A | 823B-ERS-A3-DW-1010 SS+385d, 823B-SFE-1010 | 100% | Excavation [348 Cu m] | 348 | 100% | 100% | 348 | m3 | 348 | 823B_AB |
| 823B-E-RMS3-1020 |  | Bay 31-32 (348m³) | 5d | 2012-06-19 A | 2012-06-25 A | 823B-E-RMS3-1010 | 100% | Excavation [348 Cu m] | 348 | 100% | 100% | 348 | m3 | 348 | 823B_AB |
| 823B-E-RMS3-1030 |  | Bay 33-34 (348m³) | 5d | 2012-06-26 A | 2012-06-30 A | 823B-E-RMS3-1020 | 100% | Excavation [348 Cu m] | 348 | 100% | 100% | 348 | m3 | 348 | 823B_AB |
| 823B-E-RMS3-1040 |  | Bay 35-36 (348m³) | 5d | 2012-07-03 A | 2012-07-07 A | 823B-E-RMS3-1030 | 100% | Excavation [348 Cu m] | 348 | 100% | 100% | 348 | m3 | 348 | 823B_AB |
| 823B-E-RMS3-1050 |  | Bay 37-38 (348m³) | 5d | 2012-07-09 A | 2012-07-13 A | 823B-E-RMS3-1040 | 100% | Excavation [348 Cu m] | 348 | 100% | 100% | 348 | m3 | 348 | 823B_AB |
| 823B-E-RMS3-1060 |  | Bay 39-40 (348m³) | 5d | 2012-07-14 A | 2012-07-19 A | 823B-E-RMS3-1050 | 100% | Excavation [348 Cu m] | 348 | 100% | 100% | 348 | m3 | 348 | 823B_AB |
| 823B-E-RMS3-1070 |  | Bay 41-42 (348m³) | 5d | 2012-07-20 A | 2012-07-25 A | 823B-E-RMS3-1060 | 100% | Excavation [348 Cu m] | 348 | 100% | 100% | 348 | m3 | 348 | 823B_AB |
| 823B-E-RMS3-1080 |  | Bay 43-44 (348m³) | 5d | 2012-07-26 A | 2012-07-31 A | 823B-E-RMS3-1070 | 100% | Excavation [348 Cu m] | 348 | 100% | 100% | 348 | m3 | 348 | 823B_AB |
| 823B-E-RMS3-1090 |  | Bay 45-46 (348m³) | 5d | 2012-08-01 A | 2012-08-06 A | 823B-E-RMS3-1080 | 100% | Excavation [348 Cu m] | 348 | 100% | 100% | 348 | m3 | 348 | 823B_AB |
| 823B-E-RMS3-1100 |  | Bay 47-48 (348m³) | 6d | 2012-08-07 A | 2012-08-13 A | 823B-E-RMS3-1090 | 100% | Excavation [348 Cu m] | 348 | 100% | 100% | 348 | m3 | 348 | 823B_AB |
| 823B-E-RMS3-1110 |  | Bay 49-50 (348m³) | 6d | 2012-08-14 A | 2012-08-20 A | 823B-E-RMS3-1100 | 100% | Excavation [348 Cu m] | 348 | 100% | 100% | 348 | m3 | 348 | 823B_AB |
|  | 2 | **Footing Construction** |  | 2012-06-19 | 2012-08-31 |  |  |  |  |  |  |  |  |  |  |
| 823B-E-RMS3-1120 |  | Bay 29-30 (155m³) | 10d | 2012-06-19 A | 2012-06-30 A | 823B-E-RMS3-1010 | 100% | Concrete [155 Cu m]; Concrete (Buildings & External) [155 Cu m]; Rebar [21 t] | 155 | 100% | 100% | 155 | m3 | 155 | 823B_AB |
| 823B-E-RMS3-1130 |  | Bay 31-32 (155m³) | 10d | 2012-06-26 A | 2012-07-07 A | 823B-E-RMS3-1020 | 100% | Concrete [155 Cu m]; Concrete (Buildings & External) [155 Cu m]; Rebar [21 t] | 155 | 100% | 100% | 155 | m3 | 155 | 823B_AB |
| 823B-E-RMS3-1140 |  | Bay 33-34 (155m³) | 10d | 2012-07-03 A | 2012-07-13 A | 823B-E-RMS3-1030 | 100% | Concrete [155 Cu m]; Concrete (Buildings & External) [155 Cu m]; Rebar [21 t] | 155 | 100% | 100% | 155 | m3 | 155 | 823B_AB |
| 823B-E-RMS3-1150 |  | Bay 35-36 (155m³) | 10d | 2012-07-07 A | 2012-07-18 A | 823B-E-RMS3-1040 | 100% | Concrete [155 Cu m]; Concrete (Buildings & External) [155 Cu m]; Rebar [21 t] | 155 | 100% | 100% | 155 | m3 | 155 | 823B_AB |
| 823B-E-RMS3-1160 |  | Bay 37-38 (155m³) | 10d | 2012-07-13 A | 2012-07-24 A | 823B-E-RMS3-1050 | 100% | Concrete [155 Cu m]; Concrete (Buildings & External) [155 Cu m]; Rebar [21 t] | 155 | 100% | 100% | 155 | m3 | 155 | 823B_AB |
| 823B-E-RMS3-1170 |  | Bay 39-40 (155m³) | 10d | 2012-07-19 A | 2012-07-30 A | 823B-E-RMS3-1060 | 100% | Concrete [155 Cu m]; Concrete (Buildings & External) [155 Cu m]; Rebar [21 t] | 155 | 100% | 100% | 155 | m3 | 155 | 823B_AB |
| 823B-E-RMS3-1180 |  | Bay 41-42 (155m³) | 10d | 2012-07-25 A | 2012-08-04 A | 823B-E-RMS3-1070 | 100% | Concrete [155 Cu m]; Concrete (Buildings & External) [155 Cu m]; Rebar [21 t] | 155 | 100% | 100% | 155 | m3 | 155 | 823B_AB |
| 823B-E-RMS3-1190 |  | Bay 43-44 (155m³) | 10d | 2012-07-31 A | 2012-08-10 A | 823B-E-RMS3-1080 | 100% | Concrete [155 Cu m]; Concrete (Buildings & External) [155 Cu m]; Rebar [21 t] | 155 | 100% | 100% | 155 | m3 | 155 | 823B_AB |
| 823B-E-RMS3-1200 |  | Bay 45-46 (155m³) | 10d | 2012-08-06 A | 2012-08-16 A | 823B-E-RMS3-1090 | 100% | Concrete [155 Cu m]; Concrete (Buildings & External) [155 Cu m]; Rebar [21 t] | 155 | 100% | 100% | 155 | m3 | 155 | 823B_AB |
| 823B-E-RMS3-1210 |  | Bay 47-48 (155m³) | 10d | 2012-08-13 A | 2012-08-23 A | 823B-E-RMS3-1100 | 100% | Concrete [155 Cu m]; Concrete (Buildings & External) [155 Cu m]; Rebar [21 t] | 155 | 100% | 100% | 155 | m3 | 155 | 823B_AB |
| 823B-E-RMS3-1220 |  | Bay 49-50 (172m³) | 11d | 2012-08-20 A | 2012-08-31 A | 823B-E-RMS3-1110 | 100% | Concrete [172 Cu m]; Concrete (Buildings & External) [172 Cu m]; Rebar [23 t] | 172 | 100% | 100% | 172 | m3 | 172 | 823B_AB |

| ID | WBS | Activity | Duration | Start | Finish | Predecessors | Complete | Resources | user_text4 | user_text6 | user_text7 | user_integer1 | user_text1 | user_text5 | 823B_As-built |
| --- | --- | --- | --- | --- | --- | --- | --- | --- | --- | --- | --- | --- | --- | --- | --- |
|  | 3 | **Column from +12.05 to +13.85** |  | 2012-07-03 | 2012-09-10 |  |  |  |  |  |  |  |  |  |  |
| 823B-E-RMS3-1230 |  | Bay 29-30 (11m³) | 6d | 2012-07-03 A | 2012-07-09 A | 823B-E-RMS3-1120 | 100% | Concrete [11 Cu m]; Concrete (Buildings & External) [11 Cu m]; Rebar [2 t] | 11 | 100% | 100% | 11 | m3 | 11 | 823B_AB |
| 823B-E-RMS3-1240 |  | Bay 31-32 (11m³) | 6d | 2012-07-07 A | 2012-07-13 A | 823B-E-RMS3-1130 | 100% | Concrete [11 Cu m]; Concrete (Buildings & External) [11 Cu m]; Rebar [2 t] | 11 | 100% | 100% | 11 | m3 | 11 | 823B_AB |
| 823B-E-RMS3-1250 |  | Bay 33-34 (11m³) | 6d | 2012-07-13 A | 2012-07-19 A | 823B-E-RMS3-1140 | 100% | Concrete [11 Cu m]; Concrete (Buildings & External) [11 Cu m]; Rebar [2 t] | 11 | 100% | 100% | 11 | m3 | 11 | 823B_AB |
| 823B-E-RMS3-1260 |  | Bay 35-36 (11m³) | 6d | 2012-07-19 A | 2012-07-25 A | 823B-E-RMS3-1150 | 100% | Concrete [11 Cu m]; Concrete (Buildings & External) [11 Cu m]; Rebar [2 t] | 11 | 100% | 100% | 11 | m3 | 11 | 823B_AB |
| 823B-E-RMS3-1270 |  | Bay 37-38 (11m³) | 6d | 2012-07-25 A | 2012-07-31 A | 823B-E-RMS3-1160 | 100% | Concrete [11 Cu m]; Concrete (Buildings & External) [11 Cu m]; Rebar [2 t] | 11 | 100% | 100% | 11 | m3 | 11 | 823B_AB |
| 823B-E-RMS3-1280 |  | Bay 39-40 (11m³) | 6d | 2012-07-31 A | 2012-08-06 A | 823B-E-RMS3-1170 | 100% | Concrete [11 Cu m]; Concrete (Buildings & External) [11 Cu m]; Rebar [2 t] | 11 | 100% | 100% | 11 | m3 | 11 | 823B_AB |
| 823B-E-RMS3-1290 |  | Bay 41-42 (11m³) | 6d | 2012-08-06 A | 2012-08-11 A | 823B-E-RMS3-1180 | 100% | Concrete [11 Cu m]; Concrete (Buildings & External) [11 Cu m]; Rebar [2 t] | 11 | 100% | 100% | 11 | m3 | 11 | 823B_AB |
| 823B-E-RMS3-1300 |  | Bay 43-44 (11m³) | 6d | 2012-08-11 A | 2012-08-17 A | 823B-E-RMS3-1190 | 100% | Concrete [11 Cu m]; Concrete (Buildings & External) [11 Cu m]; Rebar [2 t] | 11 | 100% | 100% | 11 | m3 | 11 | 823B_AB |
| 823B-E-RMS3-1310 |  | Bay 45-46 (11m³) | 6d | 2012-08-17 A | 2012-08-23 A | 823B-E-RMS3-1200 | 100% | Concrete [11 Cu m]; Concrete (Buildings & External) [11 Cu m]; Rebar [2 t] | 11 | 100% | 100% | 11 | m3 | 11 | 823B_AB |
| 823B-E-RMS3-1320 |  | Bay 47-48 (11m³) | 6d | 2012-08-24 A | 2012-08-30 A | 823B-E-RMS3-1210 | 100% | Concrete [11 Cu m]; Concrete (Buildings & External) [11 Cu m]; Rebar [2 t] | 11 | 100% | 100% | 11 | m3 | 11 | 823B_AB |
| 823B-E-RMS3-1330 |  | Bay 49-50 (15m³) | 7d | 2012-09-03 A | 2012-09-10 A | 823B-E-RMS3-1220 | 100% | Concrete [15 Cu m]; Concrete (Buildings & External) [15 Cu m]; Rebar [3 t] | 15 | 100% | 100% | 15 | m3 | 15 | 823B_AB |
|  | 4 | **Ground Floor Slab and Underground Utilities** |  | 2012-07-09 | 2012-12-12 |  |  |  |  |  |  |  |  |  |  |
| 823B-E-RMS3-1340 |  | Bay 29-30 (162m³) | 12d | 2012-07-09 A | 2012-07-21 A | 823B-E-RMS3-1230 | 100% | Concrete [162 Cu m]; Concrete (Buildings & External) [162 Cu m]; Rebar [22 t] | 162 | 100% | 100% | 162 | m3 | 162 | 823B_AB |
| 823B-E-RMS3-1350 |  | Bay 31-32 (162m³) | 12d | 2012-07-23 A | 2012-08-04 A | 823B-E-RMS3-1240, 823B-E-RMS3-1340 | 100% | Concrete [162 Cu m]; Concrete (Buildings & External) [162 Cu m]; Rebar [22 t] | 162 | 100% | 100% | 162 | m3 | 162 | 823B_AB |
| 823B-E-RMS3-1360 |  | Bay 33-34 (162m³) | 12d | 2012-08-06 A | 2012-08-18 A | 823B-E-RMS3-1250, 823B-E-RMS3-1350 | 100% | Concrete [162 Cu m]; Concrete (Buildings & External) [162 Cu m]; Rebar [22 t] | 162 | 100% | 100% | 162 | m3 | 162 | 823B_AB |
| 823B-E-RMS3-1370 |  | Bay 35-36 (162m³) | 12d | 2012-08-20 A | 2012-09-01 A | 823B-E-RMS3-1260, 823B-E-RMS3-1360 | 100% | Concrete [162 Cu m]; Concrete (Buildings & External) [162 Cu m]; Rebar [22 t] | 162 | 100% | 100% | 162 | m3 | 162 | 823B_AB |
| 823B-E-RMS3-1380 |  | Bay 37-38 (162m³) | 12d | 2012-09-03 A | 2012-09-15 A | 823B-E-RMS3-1270, 823B-E-RMS3-1370 | 100% | Concrete [162 Cu m]; Concrete (Buildings & External) [162 Cu m]; Rebar [22 t] | 162 | 100% | 100% | 162 | m3 | 162 | 823B_AB |
| 823B-E-RMS3-1390 |  | Bay 39-40 (162m³) | 12d | 2012-09-17 A | 2012-09-29 A | 823B-E-RMS3-1280, 823B-E-RMS3-1380 | 100% | Concrete [162 Cu m]; Concrete (Buildings & External) [162 Cu m]; Rebar [22 t] | 162 | 100% | 100% | 162 | m3 | 162 | 823B_AB |
| 823B-E-RMS3-1400 |  | Bay 41-42 (162m³) | 12d | 2012-10-03 A | 2012-10-16 A | 823B-E-RMS3-1290, 823B-E-RMS3-1390 | 100% | Concrete [162 Cu m]; Concrete (Buildings & External) [162 Cu m]; Rebar [22 t] | 162 | 100% | 100% | 162 | m3 | 162 | 823B_AB |
| 823B-E-RMS3-1410 |  | Bay 43-44 (162m³) | 12d | 2012-10-17 A | 2012-10-31 A | 823B-E-RMS3-1300, 823B-E-RMS3-1400 | 100% | Concrete [162 Cu m]; Concrete (Buildings & External) [162 Cu m]; Rebar [22 t] | 162 | 100% | 100% | 162 | m3 | 162 | 823B_AB |
| 823B-E-RMS3-1420 |  | Bay 45-46 (162m³) | 12d | 2012-11-01 A | 2012-11-14 A | 823B-E-RMS3-1310, 823B-E-RMS3-1410 | 100% | Concrete [162 Cu m]; Concrete (Buildings & External) [162 Cu m]; Rebar [22 t] | 162 | 100% | 100% | 162 | m3 | 162 | 823B_AB |
| 823B-E-RMS3-1430 |  | Bay 47-48 (162m³) | 12d | 2012-11-15 A | 2012-11-28 A | 823B-E-RMS3-1320, 823B-E-RMS3-1420 | 100% | Concrete [162 Cu m]; Concrete (Buildings & External) [162 Cu m]; Rebar [22 t] | 162 | 100% | 100% | 162 | m3 | 162 | 823B_AB |
| 823B-E-RMS3-1440 |  | Bay 49-50 (171m³) | 12d | 2012-11-29 A | 2012-12-12 A | 823B-E-RMS3-1330, 823B-E-RMS3-1430 | 100% | Concrete [171 Cu m]; Concrete (Buildings & External) [171 Cu m]; Rebar [23 t] | 171 | 100% | 100% | 171 | m3 | 171 | 823B_AB |

| ID | WBS | Activity | Duration | Start | Finish | Predecessors | Complete | Planned start | Planned finish | Resources | user_text4 | user_text6 | user_text7 | user_integer1 | user_text1 | user_text5 | 823B_As-built |
| --- | --- | --- | --- | --- | --- | --- | --- | --- | --- | --- | --- | --- | --- | --- | --- | --- | --- |
|  | 5 | **Column from +13.85 to Roof Soffit** |  | 2012-07-23 | 2012-12-19 |  |  |  |  |  |  |  |  |  |  |  |  |
| 823B-E-RMS3-1450 |  | Bay 29-30 (55m³) | 6d | 2012-07-23 A | 2012-07-28 A | 823B-E-RMS3-1340, 823B-E-RMS3-1230 | 100% |  |  | Concrete [55 Cu m]; Concrete (Buildings & External) [55 Cu m]; Rebar [11 t] | 55 | 100% | 100% | 55 | m3 | 55 | 823B_AB |
| 823B-E-RMS3-1460 |  | Bay 31-32 (55m³) | 6d | 2012-08-06 A | 2012-08-11 A | 823B-E-RMS3-1450, 823B-E-RMS3-1350 | 100% |  |  | Concrete [55 Cu m]; Concrete (Buildings & External) [55 Cu m]; Rebar [11 t] | 55 | 100% | 100% | 55 | m3 | 55 | 823B_AB |
| 823B-E-RMS3-1470 |  | Bay 33-34 (55m³) | 6d | 2012-08-20 A | 2012-08-25 A | 823B-E-RMS3-1460, 823B-E-RMS3-1360 | 100% |  |  | Concrete [55 Cu m]; Concrete (Buildings & External) [55 Cu m]; Rebar [11 t] | 55 | 100% | 100% | 55 | m3 | 55 | 823B_AB |
| 823B-E-RMS3-1480 |  | Bay 35-36 (55m³) | 6d | 2012-09-03 A | 2012-09-08 A | 823B-E-RMS3-1470, 823B-E-RMS3-1370 | 100% |  |  | Concrete [55 Cu m]; Concrete (Buildings & External) [55 Cu m]; Rebar [11 t] | 55 | 100% | 100% | 55 | m3 | 55 | 823B_AB |
| 823B-E-RMS3-1490 |  | Bay 37-38 (55m³) | 6d | 2012-09-17 A | 2012-09-22 A | 823B-E-RMS3-1480, 823B-E-RMS3-1380 | 100% |  |  | Concrete [55 Cu m]; Concrete (Buildings & External) [55 Cu m]; Rebar [11 t] | 55 | 100% | 100% | 55 | m3 | 55 | 823B_AB |
| 823B-E-RMS3-1500 |  | Bay 39-40 (55m³) | 6d | 2012-10-03 A | 2012-10-09 A | 823B-E-RMS3-1490, 823B-E-RMS3-1390 | 100% |  |  | Concrete [55 Cu m]; Concrete (Buildings & External) [55 Cu m]; Rebar [11 t] | 55 | 100% | 100% | 55 | m3 | 55 | 823B_AB |
| 823B-E-RMS3-1510 |  | Bay 41-42 (55m³) | 6d | 2012-10-16 A | 2012-10-22 A | 823B-E-RMS3-1500, 823B-E-RMS3-1400 | 100% |  |  | Concrete [55 Cu m]; Concrete (Buildings & External) [55 Cu m]; Rebar [11 t] | 55 | 100% | 100% | 55 | m3 | 55 | 823B_AB |
| 823B-E-RMS3-1520 |  | Bay 43-44 (55m³) | 6d | 2012-10-31 A | 2012-11-06 A | 823B-E-RMS3-1510, 823B-E-RMS3-1410 | 100% |  |  | Concrete [55 Cu m]; Concrete (Buildings & External) [55 Cu m]; Rebar [11 t] | 55 | 100% | 100% | 55 | m3 | 55 | 823B_AB |
| 823B-E-RMS3-1530 |  | Bay 45-46 (55m³) | 6d | 2012-11-14 A | 2012-11-20 A | 823B-E-RMS3-1520, 823B-E-RMS3-1420 | 100% |  |  | Concrete [55 Cu m]; Concrete (Buildings & External) [55 Cu m]; Rebar [11 t] | 55 | 100% | 100% | 55 | m3 | 55 | 823B_AB |
| 823B-E-RMS3-1540 |  | Bay 47-48 (55m³) | 6d | 2012-11-28 A | 2012-12-04 A | 823B-E-RMS3-1530, 823B-E-RMS3-1430 | 100% |  |  | Concrete [55 Cu m]; Concrete (Buildings & External) [55 Cu m]; Rebar [11 t] | 55 | 100% | 100% | 55 | m3 | 55 | 823B_AB |
| 823B-E-RMS3-1550 |  | Bay 49-50 (78m³) | 6d | 2012-12-13 A | 2012-12-19 A | 823B-E-RMS3-1540, 823B-E-RMS3-1440 | 100% |  |  | Concrete [78 Cu m]; Concrete (Buildings & External) [78 Cu m]; Rebar [16 t] | 78 | 100% | 100% | 78 | m3 | 78 | 823B_AB |
|  | 4 | **Non Load Bearing Wall from +13.85 to Roof Beam** |  | 2013-01-14 | 2013-05-31 |  |  |  |  |  |  |  |  |  |  |  |  |
| 823B-E-RMS-1070 |  | Bay 19-21 (143m³) | 14d | 2013-01-14 A | 2013-04-30 A | 823B-E-RMS-1060, 823B-E-RMS-1250 | 100% | 2013-03-02 | 2013-03-18 | Concrete [143 Cu m] | 143 | 100% | 100% | 143 | m3 | 143 | 823B_AB |
| 823B-E-RMS-1080 |  | Bay 22-24 (143m³) | 14d | 2013-01-14 A | 2013-04-30 A | 823B-E-RMS-1070 SS, 823B-E-RMS-1260 | 100% | 2013-03-02 | 2013-03-18 | Concrete [143 Cu m] | 143 | 100% | 100% | 143 | m3 | 143 | 823B_AB |
| 823B-E-RMS-1030 |  | Bay 7-9 (143m³) | 14d | 2013-03-18 A | 2013-03-30 A | 823B-E-RMS-1020, 823B-E-RMS-1010, 823B-E-RMS-1210 | 100% | 2013-01-30 | 2013-02-18 | Concrete [143 Cu m] | 143 | 100% | 100% | 143 | m3 | 143 | 823B_AB |
| 823B-E-RMS-1040 |  | Bay 10-12 (143m³) | 14d | 2013-03-18 A | 2013-05-03 A | 823B-E-RMS-1030 SS, 823B-E-RMS-1220 | 100% | 2013-01-30 | 2013-02-18 | Concrete [143 Cu m] | 143 | 100% | 100% | 143 | m3 | 143 | 823B_AB |
| 823B-E-RMS-1050 |  | Bay 13-15 (143m³) | 14d | 2013-03-18 A | 2013-05-03 A | 823B-E-RMS-1040 SS, 823B-E-RMS-1230 | 100% | 2013-01-30 | 2013-02-18 | Concrete [143 Cu m] | 143 | 100% | 100% | 143 | m3 | 143 | 823B_AB |
| 823B-E-RMS-1060 |  | Bay 16-18 (143m³) | 14d | 2013-03-18 A | 2013-05-03 A | 823B-E-RMS-1050 SS, 823B-E-RMS-1240 | 100% | 2013-01-30 | 2013-02-18 | Concrete [143 Cu m] | 143 | 100% | 100% | 143 | m3 | 143 | 823B_AB |
| 823B-E-RMS-1130 |  | Bay 37-39 (143m³) | 14d | 2013-03-18 A | 2013-04-04 A | 823B-E-RMS-1120 SS, 823B-E-RMS-1310 | 100% | 2013-04-03 | 2013-04-19 | Concrete [143 Cu m] | 143 | 100% | 100% | 143 | m3 | 143 | 823B_AB |
| 823B-E-RMS-1150 |  | Bay 43-45 (143m³) | 14d | 2013-03-18 A | 2013-04-08 A | 823B-E-RMS-1140, 823B-E-RMS-1330 | 100% | 2013-05-03 | 2013-05-20 | Concrete [143 Cu m] | 143 | 100% | 100% | 143 | m3 | 143 | 823B_AB |
| 823B-E-RMS-1160 |  | Bay 46-48 (143m³) | 14d | 2013-03-18 A | 2013-04-08 A | 823B-E-RMS-1150 SS, 823B-E-RMS-1340 | 100% | 2013-05-03 | 2013-05-20 | Concrete [143 Cu m] | 143 | 100% | 100% | 143 | m3 | 143 | 823B_AB |
| 823B-E-RMS-1140 |  | Bay 40-42 (143m³) | 14d | 2013-03-20 A | 2013-05-03 A | 823B-E-RMS-1130 SS, 823B-E-RMS-1320 | 100% | 2013-04-03 | 2013-04-19 | Concrete [143 Cu m] | 143 | 100% | 100% | 143 | m3 | 143 | 823B_AB |
| 823B-E-RMS-1170 |  | Bay 49-51 (100m³) | 14d | 2013-03-20 A | 2013-05-03 A | 823B-E-RMS-1160 SS, 823B-E-RMS-1350 | 100% | 2013-05-03 | 2013-05-20 | Concrete [100 Cu m] | 100 | 100% | 100% | 100 | m3 | 100 | 823B_AB |
| 823B-E-RMS-1180 |  | Bay 52 (190m³) | 14d | 2013-03-20 A | 2013-05-03 A | 823B-E-RMS-1170 SS, 823B-E-RMS-1360 | 100% | 2013-05-08 | 2013-05-24 | Concrete [190 Cu m] | 190 | 100% | 100% | 190 | m3 | 190 | 823B_AB |
| 823B-E-RMS-1090 |  | Bay 25-27 (143m³) | 14d | 2013-03-25 A | 2013-05-31 A | 823B-E-RMS-1080 SS, 823B-E-RMS-1270 | 100% | 2013-03-02 | 2013-03-18 | Concrete [143 Cu m] | 143 | 100% | 100% | 143 | m3 | 143 | 823B_AB |
| 823B-E-RMS-1010 |  | Bay 1-3 (102m³) | 14d | 2013-04-02 A | 2013-05-31 A | 823B-E-RMS-1190 | 100% | 2013-01-02 | 2013-01-17 | Concrete [102 Cu m] | 102 | 100% | 100% | 102 | m3 | 102 | 823B_AB |
| 823B-E-RMS-1100 |  | Bay 28-30 (143m³) | 14d | 2013-04-02 A | 2013-05-31 A | 823B-E-RMS-1090 SS, 823B-E-RMS-1280 | 100% | 2013-03-02 | 2013-03-18 | Concrete [143 Cu m] | 143 | 100% | 100% | 143 | m3 | 143 | 823B_AB |
| 823B-E-RMS-1110 |  | Bay 31-33 (143m³) | 14d | 2013-04-05 A | 2013-04-18 A | 823B-E-RMS-1100, 823B-E-RMS-1290 | 100% | 2013-04-03 | 2013-04-19 | Concrete [143 Cu m] | 143 | 100% | 100% | 143 | m3 | 143 | 823B_AB |
| 823B-E-RMS-1120 |  | Bay 34-36 (143m³) | 14d | 2013-04-08 A | 2013-04-20 A | 823B-E-RMS-1110 SS, 823B-E-RMS-1300 | 100% | 2013-04-03 | 2013-04-19 | Concrete [143 Cu m] | 143 | 100% | 100% | 143 | m3 | 143 | 823B_AB |
| 823B-E-RMS-1020 |  | Bay 4-6 (143m³) | 14d | 2013-04-15 A | 2013-05-31 A | 823B-E-RMS-1010 SS, 823B-E-RMS-1200 | 100% | 2013-01-02 | 2013-01-17 | Concrete [143 Cu m] | 143 | 100% | 100% | 143 | m3 | 143 | 823B_AB |

| ID | WBS | Activity | Duration | Start | Finish | Predecessors | Complete | Planned start | Planned finish | Resources | user_text4 | user_text6 | user_text7 | user_integer1 | user_text1 | user_text5 | 823B_As-built |
| --- | --- | --- | --- | --- | --- | --- | --- | --- | --- | --- | --- | --- | --- | --- | --- | --- | --- |
|  | 5 | **Roof Slab and Beams** |  | 2012-09-17 | 2013-03-16 |  |  |  |  |  |  |  |  |  |  |  |  |
| 823B-E-RMS-1250 |  | Bay 19-21 (311m³) | 24d | 2012-09-17 A | 2013-02-02 A | 823B-E-RMS2-1310, 823B-E-RMS2-1320, 823B-E-RMS-1240 | 100% | 2013-01-30 | 2013-03-01 | Concrete [311 Cu m] | 311 | 100% | 100% | 311 | m3 | 311 | 823B_AB |
| 823B-E-RMS-1260 |  | Bay 22-24 (311m³) | 24d | 2012-09-24 A | 2013-02-28 A | 823B-E-RMS2-1320, 823B-E-RMS2-1330, 823B-E-RMS-1250 SS | 100% | 2013-01-30 | 2013-03-01 | Concrete [311 Cu m] | 311 | 100% | 100% | 311 | m3 | 311 | 823B_AB |
| 823B-E-RMS-1210 |  | Bay 7-9 (311m³) | 24d | 2012-10-29 A | 2013-02-02 A | 823B-E-RMS1-1320, 823B-E-RMS1-1330, 823B-E-RMS-1200 | 100% | 2013-01-02 | 2013-01-29 | Concrete [311 Cu m] | 311 | 100% | 100% | 311 | m3 | 311 | 823B_AB |
| 823B-E-RMS-1220 |  | Bay 10-12 (311m³) | 24d | 2012-10-29 A | 2012-12-28 A | 823B-E-RMS1-1330, 823B-E-RMS1-1340, 823B-E-RMS-1210 SS | 100% | 2013-01-02 | 2013-01-29 | Concrete [311 Cu m] | 311 | 100% | 100% | 311 | m3 | 311 | 823B_AB |
| 823B-E-RMS-1340 |  | Bay 46-48 (311m³) | 24d | 2012-11-19 A | 2012-12-24 A | 823B-E-RMS3-1530, 823B-E-RMS3-1540, 823B-E-RMS-1330 SS | 100% | 2013-04-03 | 2013-05-02 | Concrete [311 Cu m] | 311 | 100% | 100% | 311 | m3 | 311 | 823B_AB |
| 823B-E-RMS-1330 |  | Bay 43-45 (311m³) | 24d | 2012-11-26 A | 2012-12-27 A | 823B-E-RMS3-1520, 823B-E-RMS3-1530, 823B-E-RMS-1320 | 100% | 2013-04-03 | 2013-05-02 | Concrete [311 Cu m] | 311 | 100% | 100% | 311 | m3 | 311 | 823B_AB |
| 823B-E-RMS-1230 |  | Bay 13-15 (311m³) | 24d | 2012-11-27 A | 2013-01-12 A | 823B-E-RMS1-1350, 823B-E-RMS2-1290, 823B-E-RMS-1220 SS | 100% | 2013-01-02 | 2013-01-29 | Concrete [311 Cu m] | 311 | 100% | 100% | 311 | m3 | 311 | 823B_AB |
| 823B-E-RMS-1240 |  | Bay 16-18 (311m³) | 24d | 2012-12-03 A | 2013-01-19 A | 823B-E-RMS2-1290, 823B-E-RMS2-1300, 823B-E-RMS-1230 SS | 100% | 2013-01-02 | 2013-01-29 | Concrete [311 Cu m] | 311 | 100% | 100% | 311 | m3 | 311 | 823B_AB |
| 823B-E-RMS-1310 |  | Bay 37-39 (311m³) | 24d | 2012-12-17 A | 2013-01-26 A | 823B-E-RMS3-1490, 823B-E-RMS3-1500, 823B-E-RMS-1300 SS | 100% | 2013-03-02 | 2013-04-02 | Concrete [311 Cu m] | 311 | 100% | 100% | 311 | m3 | 311 | 823B_AB |
| 823B-E-RMS-1320 |  | Bay 40-42 (311m³) | 24d | 2012-12-17 A | 2012-12-29 A | 823B-E-RMS3-1500, 823B-E-RMS3-1510, 823B-E-RMS-1310 SS | 100% | 2013-03-02 | 2013-04-02 | Concrete [311 Cu m] | 311 | 100% | 100% | 311 | m3 | 311 | 823B_AB |
| 823B-E-RMS-1350 |  | Bay 49-51 (311m³) | 24d | 2012-12-31 A | 2013-01-12 A | 823B-E-RMS3-1550, 823B-E-RMS-1340 SS | 100% | 2013-04-03 | 2013-05-02 | Concrete [311 Cu m] | 311 | 100% | 100% | 311 | m3 | 311 | 823B_AB |
| 823B-E-RMS-1360 |  | Bay 52 (103m³) | 28d | 2012-12-31 A | 2013-01-12 A | 823B-E-RMS-1350 SS | 100% | 2013-04-03 | 2013-05-07 | Concrete [103 Cu m] | 103 | 100% | 100% | 103 | m3 | 103 | 823B_AB |
| 823B-E-RMS-1200 |  | Bay 4-6 (311m³) | 24d | 2013-01-14 A | 2013-02-28 A | 823B-E-RMS1-1300, 823B-E-RMS1-1310, 823B-E-RMS-1190 SS | 100% | 2012-12-01 | 2012-12-31 | Concrete [311 Cu m] | 311 | 100% | 100% | 311 | m3 | 311 | 823B_AB |
| 823B-E-RMS-1300 |  | Bay 34-36 (311m³) | 24d | 2013-01-14 A | 2013-03-16 A | 823B-E-RMS3-1470, 823B-E-RMS3-1480, 823B-E-RMS-1290 SS | 100% | 2013-03-02 | 2013-04-02 | Concrete [311 Cu m] | 311 | 100% | 100% | 311 | m3 | 311 | 823B_AB |
| 823B-E-RMS-1190 |  | Bay 1-3 (315m³) | 24d | 2013-01-28 A | 2013-02-28 A | 823B-E-RMS1-1290, 823B-E-RMS1-1300 | 100% | 2012-12-01 | 2012-12-31 | Concrete [315 Cu m] | 315 | 100% | 100% | 315 | m3 | 315 | 823B_AB |
| 823B-E-RMS-1270 |  | Bay 25-27 (311m³) | 24d | 2013-02-04 A | 2013-03-04 A | 823B-E-RMS2-1340, 823B-E-RMS2-1350, 823B-E-RMS-1260 SS | 100% | 2013-01-30 | 2013-03-01 | Concrete [311 Cu m] | 311 | 100% | 100% | 311 | m3 | 311 | 823B_AB |
| 823B-E-RMS-1280 |  | Bay 28-30 (311m³) | 24d | 2013-02-25 A | 2013-03-04 A | 823B-E-RMS2-1350, 823B-E-RMS3-1450, 823B-E-RMS-1270 SS | 100% | 2013-01-30 | 2013-03-01 | Concrete [311 Cu m] | 311 | 100% | 100% | 311 | m3 | 311 | 823B_AB |
| 823B-E-RMS-1290 |  | Bay 31-33 (311m³) | 24d | 2013-02-25 A | 2013-03-16 A | 823B-E-RMS3-1460, 823B-E-RMS3-1470, 823B-E-RMS-1280 | 100% | 2013-03-02 | 2013-04-02 | Concrete [311 Cu m] | 311 | 100% | 100% | 311 | m3 | 311 | 823B_AB |
|  | 6 | **Platfrom Slab and Column (Grid A&C)** |  | 2013-04-02 | 2013-05-21 |  |  |  |  |  |  |  |  |  |  |  |  |
| 823B-E-RMS-1380 |  | Bay 4-6 (41m³) | 16d | 2013-04-02 A | 2013-05-02 A | 823B-E-RMS-1370 SS | 100% | 2013-01-02 | 2013-01-19 | Concrete [41 Cu m] | 41 | 100% | 100% | 41 | m3 | 41 | 823B_AB |
| 823B-E-RMS-1390 |  | Bay 7-9 (41m³) | 16d | 2013-04-02 A | 2013-05-02 A | 823B-E-RMS-1380, 823B-E-RMS-1210 | 100% | 2013-01-30 | 2013-02-20 | Concrete [41 Cu m] | 41 | 100% | 100% | 41 | m3 | 41 | 823B_AB |
| 823B-E-RMS-1400 |  | Bay 10-12 (41m³) | 16d | 2013-04-02 A | 2013-04-30 A | 823B-E-RMS-1390 SS | 100% | 2013-01-30 | 2013-02-20 | Concrete [41 Cu m] | 41 | 100% | 100% | 41 | m3 | 41 | 823B_AB |
| 823B-E-RMS-1410 |  | Bay 13-15 (41m³) | 16d | 2013-04-02 A | 2013-04-30 A | 823B-E-RMS-1400 SS | 100% | 2013-01-30 | 2013-02-20 | Concrete [41 Cu m] | 41 | 100% | 100% | 41 | m3 | 41 | 823B_AB |
| 823B-E-RMS-1460 |  | Bay 28-30 (41m³) | 16d | 2013-04-02 A | 2013-05-02 A | 823B-E-RMS-1450 SS | 100% | 2013-03-02 | 2013-03-20 | Concrete [41 Cu m] | 41 | 100% | 100% | 41 | m3 | 41 | 823B_AB |
| 823B-E-RMS-1470 |  | Bay 31-33 (41m³) | 16d | 2013-04-02 A | 2013-05-02 A | 823B-E-RMS-1290 | 100% | 2013-04-03 | 2013-04-22 | Concrete [41 Cu m] | 41 | 100% | 100% | 41 | m3 | 41 | 823B_AB |
| 823B-E-RMS-1480 |  | Bay 34-36 (41m³) | 16d | 2013-04-05 A | 2013-05-02 A | 823B-E-RMS-1470 SS | 100% | 2013-04-03 | 2013-04-22 | Concrete [41 Cu m] | 41 | 100% | 100% | 41 | m3 | 41 | 823B_AB |
| 823B-E-RMS-1490 |  | Bay 37-39 (41m³) | 16d | 2013-04-10 A | 2013-05-02 A | 823B-E-RMS-1480 SS | 100% | 2013-04-03 | 2013-04-22 | Concrete [41 Cu m] | 41 | 100% | 100% | 41 | m3 | 41 | 823B_AB |
| 823B-E-RMS-1420 |  | Bay 16-18 (41m³) | 16d | 2013-04-12 A | 2013-05-02 A | 823B-E-RMS-1410 SS | 100% | 2013-01-30 | 2013-02-20 | Concrete [41 Cu m] | 41 | 100% | 100% | 41 | m3 | 41 | 823B_AB |
| 823B-E-RMS-1500 |  | Bay 40-42 (41m³) | 16d | 2013-04-12 A | 2013-04-30 A | 823B-E-RMS-1490 SS | 100% | 2013-04-03 | 2013-04-22 | Concrete [41 Cu m] | 41 | 100% | 100% | 41 | m3 | 41 | 823B_AB |
| 823B-E-RMS-1430 |  | Bay 19-21 (41m³) | 16d | 2013-04-17 A | 2013-05-06 A | 823B-E-RMS-1250 | 100% | 2013-03-02 | 2013-03-20 | Concrete [41 Cu m] | 41 | 100% | 100% | 41 | m3 | 41 | 823B_AB |
| 823B-E-RMS-1510 |  | Bay 43-45 (41m³) | 16d | 2013-04-17 A | 2013-04-30 A | 823B-E-RMS-1330 | 100% | 2013-05-03 | 2013-05-22 | Concrete [41 Cu m] | 41 | 100% | 100% | 41 | m3 | 41 | 823B_AB |
| 823B-E-RMS-1520 |  | Bay 46-48 (41m³) | 16d | 2013-04-17 A | 2013-04-30 A | 823B-E-RMS-1510 SS | 100% | 2013-05-03 | 2013-05-22 | Concrete [41 Cu m] | 41 | 100% | 100% | 41 | m3 | 41 | 823B_AB |
| 823B-E-RMS-1440 |  | Bay 22-24 (41m³) | 16d | 2013-04-19 A | 2013-05-08 A | 823B-E-RMS-1430 SS | 100% | 2013-03-02 | 2013-03-20 | Concrete [41 Cu m] | 41 | 100% | 100% | 41 | m3 | 41 | 823B_AB |
| 823B-E-RMS-1530 |  | Bay 49-51 (41m³) | 16d | 2013-04-20 A | 2013-05-09 A | 823B-E-RMS-1520 SS | 100% |  |  | Concrete [41 Cu m] | 41 | 100% | 100% | 41 | m3 | 41 | 823B_AB |
| 823B-E-RMS-1540 |  | Bay 52 (41m³) | 16d | 2013-04-20 A | 2013-05-09 A | 823B-E-RMS-1530 SS | 100% | 2013-05-03 | 2013-05-22 | Concrete [41 Cu m] | 41 | 100% | 100% | 41 | m3 | 41 | 823B_AB |
| 823B-E-RMS-1450 |  | Bay 25-27 (41m³) | 57d | 2013-04-24 A | 2013-05-13 A | 823B-E-RMS-1440 SS | 100% | 2013-04-24 | 2013-07-03 | Concrete [41 Cu m] | 41 | 100% | 100% | 41 | m3 | 41 | 823B_AB |
| 823B-E-RMS-1370 |  | Bay 1-3 (41m³) | 16d | 2013-05-02 A | 2013-05-21 A | 823B-E-RMS-1190 | 100% | 2013-01-02 | 2013-01-19 | Concrete [41 Cu m] | 41 | 100% | 100% | 41 | m3 | 41 | 823B_AB |

| ID | WBS | Activity | Type | Duration | Start | Finish | Predecessors | Complete | Planned start | Planned finish | Resources | user_text4 | user_text6 | user_text7 | user_integer1 | user_text1 | user_text5 | 823B_As-built |
| --- | --- | --- | --- | --- | --- | --- | --- | --- | --- | --- | --- | --- | --- | --- | --- | --- | --- | --- |
|  | 7 | **Platfrom Slab and Column (Grid B)** |  |  | 2013-01-14 | 2013-05-02 |  |  |  |  |  |  |  |  |  |  |  |  |
| 823B-E-RMS-1570 |  | Bay 7-9 (32m³) |  | 12d | 2013-01-14 A | 2013-04-02 A | 823B-E-RMS-1210 | 100% | 2013-01-30 | 2013-02-15 | Concrete [32 Cu m] | 32 | 100% | 100% | 32 | m3 | 32 | 823B_AB |
| 823B-E-RMS-1580 |  | Bay 10-12 (32m³) |  | 12d | 2013-01-14 A | 2013-04-02 A | 823B-E-RMS-1220, 823B-E-RMS-1570 SS | 100% | 2013-01-30 | 2013-02-15 | Concrete [32 Cu m] | 32 | 100% | 100% | 32 | m3 | 32 | 823B_AB |
| 823B-E-RMS-1700 |  | Bay 46-48 (32m³) |  | 12d | 2013-01-14 A | 2013-04-16 A | 823B-E-RMS-1340, 823B-E-RMS-1690 SS | 100% | 2013-05-03 | 2013-05-16 | Concrete [32 Cu m] | 32 | 100% | 100% | 32 | m3 | 32 | 823B_AB |
| 823B-E-RMS-1590 |  | Bay 13-15 (32m³) |  | 12d | 2013-01-28 A | 2013-04-02 A | 823B-E-RMS-1230, 823B-E-RMS-1580 SS | 100% | 2013-01-30 | 2013-02-15 | Concrete [32 Cu m] | 32 | 100% | 100% | 32 | m3 | 32 | 823B_AB |
| 823B-E-RMS-1600 |  | Bay 16-18 (32m³) |  | 12d | 2013-03-01 A | 2013-03-12 A | 823B-E-RMS-1240, 823B-E-RMS-1590 SS | 100% | 2013-01-30 | 2013-02-15 | Concrete [32 Cu m] | 32 | 100% | 100% | 32 | m3 | 32 | 823B_AB |
| 823B-E-RMS-1670 |  | Bay 37-39 (32m³) |  | 12d | 2013-03-04 A | 2013-03-23 A | 823B-E-RMS-1310, 823B-E-RMS-1660 SS | 100% | 2013-04-03 | 2013-04-17 | Concrete [32 Cu m] | 32 | 100% | 100% | 32 | m3 | 32 | 823B_AB |
| 823B-E-RMS-1680 |  | Bay 40-42 (32m³) |  | 12d | 2013-03-04 A | 2013-04-02 A | 823B-E-RMS-1320, 823B-E-RMS-1670 SS | 100% | 2013-04-03 | 2013-04-17 | Concrete [32 Cu m] | 32 | 100% | 100% | 32 | m3 | 32 | 823B_AB |
| 823B-E-RMS-1610 |  | Bay 19-21 (32m³) |  | 12d | 2013-03-09 A | 2013-03-23 A | 823B-E-RMS-1250 | 100% | 2013-03-02 | 2013-03-15 | Concrete [32 Cu m] | 32 | 100% | 100% | 32 | m3 | 32 | 823B_AB |
| 823B-E-RMS-1620 |  | Bay 22-24 (32m³) |  | 12d | 2013-03-09 A | 2013-03-23 A | 823B-E-RMS-1260, 823B-E-RMS-1610 SS | 100% | 2013-03-02 | 2013-03-15 | Concrete [32 Cu m] | 32 | 100% | 100% | 32 | m3 | 32 | 823B_AB |
| 823B-E-RMS-1630 |  | Bay 25-27 (32m³) |  | 12d | 2013-03-13 A | 2013-03-23 A | 823B-E-RMS-1270, 823B-E-RMS-1620 SS | 100% | 2013-03-02 | 2013-03-15 | Concrete [32 Cu m] | 32 | 100% | 100% | 32 | m3 | 32 | 823B_AB |
| 823B-E-RMS-1640 |  | Bay 28-30 (32m³) |  | 12d | 2013-03-13 A | 2013-04-08 A | 823B-E-RMS-1280, 823B-E-RMS-1630 SS | 100% | 2013-03-02 | 2013-03-15 | Concrete [32 Cu m] | 32 | 100% | 100% | 32 | m3 | 32 | 823B_AB |
| 823B-E-RMS-1660 |  | Bay 34-36 (32m³) |  | 12d | 2013-03-18 A | 2013-04-30 A | 823B-E-RMS-1300, 823B-E-RMS-1650 SS | 100% | 2013-04-03 | 2013-04-17 | Concrete [32 Cu m] | 32 | 100% | 100% | 32 | m3 | 32 | 823B_AB |
| 823B-E-RMS-1550 |  | Bay 1-3 (32m³) |  | 12d | 2013-04-02 A | 2013-05-02 A | 823B-E-RMS-1190 | 100% | 2013-01-02 | 2013-01-15 | Concrete [32 Cu m] | 32 | 100% | 100% | 32 | m3 | 32 | 823B_AB |
| 823B-E-RMS-1690 |  | Bay 43-45 (32m³) |  | 12d | 2013-04-02 A | 2013-04-16 A | 823B-E-RMS-1330 | 100% | 2013-05-03 | 2013-05-16 | Concrete [32 Cu m] | 32 | 100% | 100% | 32 | m3 | 32 | 823B_AB |
| 823B-E-RMS-1710 |  | Bay 49-51 (32m³) |  | 12d | 2013-04-02 A | 2013-05-02 A | 823B-E-RMS-1350, 823B-E-RMS-1700 SS | 100% | 2013-05-03 | 2013-05-16 | Concrete [32 Cu m] | 32 | 100% | 100% | 32 | m3 | 32 | 823B_AB |
| 823B-E-RMS-1720 |  | Bay 52 (32m³) |  | 12d | 2013-04-02 A | 2013-05-02 A | 823B-E-RMS-1360 SS, 823B-E-RMS-1710 SS | 100% | 2013-05-03 | 2013-05-16 | Concrete [32 Cu m] | 32 | 100% | 100% | 32 | m3 | 32 | 823B_AB |
| 823B-E-RMS-1650 |  | Bay 31-33 (32m³) |  | 12d | 2013-04-09 A | 2013-04-30 A | 823B-E-RMS-1290 | 100% | 2013-04-03 | 2013-04-17 | Concrete [32 Cu m] | 32 | 100% | 100% | 32 | m3 | 32 | 823B_AB |
| 823B-E-RMS-1560 |  | Bay 4-6 (32m³) |  | 12d | 2013-04-15 A | 2013-04-30 A | 823B-E-RMS-1200, 823B-E-RMS-1550 SS | 100% | 2013-01-02 | 2013-01-15 | Concrete [32 Cu m] | 32 | 100% | 100% | 32 | m3 | 32 | 823B_AB |
|  | 2 | **ABWF** |  |  | 2013-06-01 | 2015-11-11 |  |  |  |  |  |  |  |  |  |  |  |  |
|  | 1 | **Maintenance Pit Area** |  |  | 2013-06-01 | 2013-12-30 |  |  |  |  |  |  |  |  |  |  |  |  |
| 823B-RMSA-1010 |  | Block work | resource dependent | 99d | 2013-06-01 A | 2013-12-02 A | 823B-E-RMS-1370, 823B-E-RMS-1550 | 100% | 2013-01-21 | 2013-05-25 |  |  | 100% | 100% |  |  |  | 823B_AB |
| 823B-RMSA-1030 |  | Rail steel post (Central Platform) | resource dependent | 130d | 2013-06-01 A | 2013-06-29 A | 823B-E-RMS-1190 SS | 100% | 2012-12-01 | 2013-05-14 |  |  | 100% | 100% |  |  |  | 823B_AB |
| 823B-RMSA-1040 |  | Rail Steel post (GL A & C) | resource dependent | 120d | 2013-06-01 A | 2013-06-29 A | 823B-RMSA-1030 SS+33d | 100% | 2013-01-12 | 2013-06-11 |  |  | 100% | 100% |  |  |  | 823B_AB |
| 823B-RMSA-1050 |  | Screeding to Maintenance Pit (Beside Central Platform) | resource dependent | 109d | 2013-06-01 A | 2013-06-29 A | 823B-RMSA-1030 SS+30d | 100% | 2013-01-09 | 2013-05-25 |  |  | 100% | 100% |  |  |  | 823B_AB |
| 823B-RMSA-1060 |  | Screeding to Maintenance Pit (GL A & C) | resource dependent | 77d | 2013-06-01 A | 2013-06-29 A | 823B-RMSA-1040 SS+29d | 100% | 2013-02-19 | 2013-05-25 |  |  | 100% | 100% |  |  |  | 823B_AB |
| 823B-RMSA-1020 |  | Access Panel | resource dependent | 125d | 2013-07-09 A | 2013-12-02 A | 823B-RMSA-1010 SS+30d | 100% | 2013-02-28 | 2013-08-01 |  |  | 100% | 100% |  |  |  | 823B_AB |
| 823B-RMSA-1070 |  | Floor sealer | resource dependent | 85d | 2013-11-01 A | 2013-12-30 A | 823B-RMSA-1060 SS+45d, 823B-PRO-1010 | 100% | 2013-04-17 | 2013-07-29 |  |  | 100% | 100% |  |  |  | 823B_AB |

| ID | WBS | Activity | Type | Duration | Start | Finish | Predecessors | Complete | Planned start | Planned finish | user_text6 | user_text7 | 823B_As-built |
| --- | --- | --- | --- | --- | --- | --- | --- | --- | --- | --- | --- | --- | --- |
|  | 2 | **Lower Platform** |  |  | 2013-09-02 | 2013-12-02 |  |  |  |  |  |  |  |
| 823B-RMSA-1080 |  | Chain railing (Central Platform) | resource dependent | 150d | 2013-09-02 A | 2013-12-02 A | 823B-RMSA-1110 SS+54d | 100% | 2013-03-23 | 2013-09-24 | 100% | 100% | 823B_AB |
| 823B-RMSA-1090 |  | Chain railing (GL A & C platform) | resource dependent | 150d | 2013-09-02 A | 2013-12-02 A | 823B-RMSA-1120 SS+54d | 100% | 2013-03-28 | 2013-09-28 | 100% | 100% | 823B_AB |
| 823B-RMSA-1100 |  | Floor sealer | resource dependent | 45d | 2013-11-01 A | 2013-11-30 A | 823B-RMSA-1130 | 100% | 2013-07-03 | 2013-08-23 | 100% | 100% | 823B_AB |
|  | 3 | **Upper Platform** |  |  | 2013-06-01 | 2014-02-28 |  |  |  |  |  |  |  |
| 823B-RMSA-1110 |  | Inner Steel platform (Central Platform) | resource dependent | 99d | 2013-06-01 A | 2013-09-28 A | 823B-E-RMS-1550 | 100% | 2013-01-16 | 2013-05-21 | 100% | 100% | 823B_AB |
| 823B-RMSA-1120 |  | Other Steel Platform (GL A & C Platform) | resource dependent | 99d | 2013-06-01 A | 2013-09-28 A | 823B-E-RMS-1370 | 100% | 2013-01-21 | 2013-05-25 | 100% | 100% | 823B_AB |
| 823B-RMSA-1130 |  | Smoke curtain | resource dependent | 30d | 2014-02-01 A | 2014-02-28 A | 823B-RMSA-1120, 823B-RMSA-1140, 823B-PRO-1010 | 100% | 2013-05-27 | 2013-07-02 | 100% | 100% | 823B_AB |
|  | 4 | **Roof** |  |  | 2013-06-01 | 2015-11-11 |  |  |  |  |  |  |  |
| 823B-RMSA-1140 |  | Waterproofing system | resource dependent | 115d | 2013-06-01 A | 2013-12-02 A | 823B-E-RMS-1190 | 100% | 2013-01-02 | 2013-05-25 | 100% | 100% | 823B_AB |
| 823B-RMSA-1150 |  | Structure steel for louvre wall | resource dependent | 100d | 2013-06-01 A | 2013-09-21 A | 823B-E-RMS-1180 | 100% | 2013-05-25 | 2013-09-21 | 100% | 100% | 823B_AB |
| 823B-RMSA-1170 |  | Smoke ventilator system | resource dependent | 94d | 2013-06-01 A | 2014-06-12 A | 823B-RMSA-1160 SS | 100% | 2013-10-30 | 2014-02-22 | 100% | 100% | 823B_AB |
| 823B-RMSA-1160 |  | Louvre wall | resource dependent | 90d | 2013-08-01 A | 2013-09-28 A | 823B-RMSA-1150 FS+30d, 823B-PRO-1010 | 100% | 2013-10-30 | 2014-02-18 | 100% | 100% | 823B_AB |
| 823B-RMSA-1180 |  | SS railing | resource dependent | 94d | 2013-09-28 A | 2013-11-22 A | 823B-RMSA-1170 SS | 100% | 2013-10-30 | 2014-02-22 | 100% | 100% | 823B_AB |
| 823B-RMSA-1190 |  | Green roof system | resource dependent | 100d | 2015-03-02 A | 2015-11-11 A | 823B-RMSA-1280 SS | 100% | 2015-03-02 | 2015-07-04 | 100% | 100% | 823B_AB |
|  | 5 | **Facades** |  |  | 2013-06-01 | 2014-09-30 |  |  |  |  |  |  |  |
| 823B-RMSA-1200 |  | Louvre frame | resource dependent | 175d | 2013-06-01 A | 2013-09-21 A | 823B-E-RMS-1030 | 100% | 2013-02-19 | 2013-09-19 | 100% | 100% | 823B_AB |
| 823B-RMSA-1220 |  | Window frame | resource dependent | 175d | 2013-06-01 A | 2013-12-02 A | 823B-E-RMS-1030 | 100% | 2013-02-19 | 2013-09-19 | 100% | 100% | 823B_AB |
| 823B-RMSA-1260 |  | Mineral silicate paint (External only) | resource dependent | 99d | 2013-06-01 A | 2014-09-24 A | 823B-E-RMS-1060 | 100% | 2013-02-19 | 2013-06-21 | 100% | 100% | 823B_AB |
| 823B-RMSA-1210 |  | Louvre Blade | resource dependent | 120d | 2013-09-02 A | 2013-09-29 A | 823B-RMSA-1200 | 100% | 2013-09-21 | 2014-02-17 | 100% | 100% | 823B_AB |
| 823B-RMSA-1230 |  | Window glass | resource dependent | 120d | 2013-09-21 A | 2014-02-17 A | 823B-RMSA-1220 | 100% |  |  | 100% | 100% | 823B_AB |
| 823B-RMSA-1240 |  | Masonary Paint (Internal only) | resource dependent | 120d | 2013-10-02 A | 2014-02-26 A | 823B-RMSA-1110, 823B-RMSA-1120, 823B-PRO-1010 | 100% | 2013-05-27 | 2013-10-18 | 100% | 100% | 823B_AB |
| 823B-RMSA-1250 |  | Sliding Door frame | resource dependent | 45d | 2013-12-02 A | 2013-12-31 A | 823B-E-RMS-1180 | 100% | 2013-05-25 | 2013-07-18 | 100% | 100% | 823B_AB |
| 823B-RMSA-1270 |  | Architectural fins | resource dependent | 160d | 2014-09-01 A | 2014-09-30 A | 823B-RMSA-1260 SS+30d | 100% | 2014-09-01 | 2015-03-16 | 100% | 100% | 823B_AB |
| 823B-RMSA-1280 |  | Green wall system | resource dependent | 78d | 2014-09-01 A | 2014-09-30 A | 823B-RMSA-1260 | 100% | 2014-09-25 | 2014-12-29 | 100% | 100% | 823B_AB |

| ID | WBS | Activity | Type | Duration | Start | Finish | Predecessors | Complete | Planned start | Planned finish | Resources | user_text6 | user_text7 | 823B_As-built | user_text4 | user_integer1 | user_text1 | user_text5 |
| --- | --- | --- | --- | --- | --- | --- | --- | --- | --- | --- | --- | --- | --- | --- | --- | --- | --- | --- |
|  | 6 | **Final Fix** |  |  | 2014-10-11 | 2014-11-15 |  |  |  |  |  |  |  |  |  |  |  |  |
| 823B-RMSA-1290 |  | ABWF final fix | resource dependent | 154d | 2014-10-11 A | 2014-11-15 A | 823B-RMSA-1190 SS+7d, 823B-RMSA-1270 SS, 823B-RMSA-1280 SS+7d | 100% | 2014-10-11 | 2015-04-20 |  | 100% | 100% | 823B_AB |  |  |  |  |
|  | 3 | **Builder's Work in Connection with Services** |  |  | 2013-03-05 | 2013-05-28 |  |  |  |  |  |  |  |  |  |  |  |  |
| 823B-E-RMS-B-2000 |  | Pipe laying (stormwater system) |  | 48d | 2013-03-05 A | 2013-05-04 A | 823B-E-RMS-1190, 823B-E-RMS-1200, 823B-E-RMS-1210, 823B-E-RMS-1220, 823B-E-RMS-1230, 823B-E-RMS-1240, 823B-E-RMS-1250, 823B-E-RMS-1260, 823B-E-RMS-1270 | 100% | 2013-03-02 | 2013-05-02 |  | 100% | 100% | 823B_AB |  |  |  |  |
| 823B-E-RMS-B-1000 |  | Lifting eye (5 nos) |  | 12d | 2013-03-18 A | 2013-04-02 A | 823B-E-RMS-1190, 823B-E-RMS-1200, 823B-E-RMS-1210, 823B-E-RMS-1220, 823B-E-RMS-1230, 823B-E-RMS-1240, 823B-E-RMS-1250, 823B-E-RMS-1260, 823B-E-RMS-1270, 823B-E-RMS-1280, 823B-E-RMS-1290, 823B-E-RMS-1300, 823B-E-RMS-1310, 823B-E-RMS-1320, 823B-E-RMS-1330, 823B-E-RMS-1340, 823B-E-RMS-1350, 823B-E-RMS-1360 | 100% | 2013-05-08 | 2013-05-22 |  | 100% | 100% | 823B_AB | 5 | 5 | nos | 5 |
| 823B-E-RMS-B-3000 |  | Pipe laying (foulwater system) |  | 48d | 2013-03-27 A | 2013-05-28 A | 823B-E-RMS-B-2000 SS+19d | 100% | 2013-03-25 | 2013-05-25 |  | 100% | 100% | 823B_AB |  |  |  |  |
| 823B-E-RMS-B-4000 |  | Earthing (main earthing & lighting protection system) |  | 48d | 2013-03-27 A | 2013-05-28 A | 823B-E-RMS-B-3000 SS | 100% | 2013-03-25 | 2013-05-25 |  | 100% | 100% | 823B_AB |  |  |  |  |
|  | F | **MAIN BUIDLING (SMB)** |  |  | 2011-09-14 | 2015-04-16 |  |  |  |  |  |  |  |  |  |  |  |  |
|  | 1 | **STRUCTURE** |  |  | 2011-09-14 | 2013-01-30 |  |  |  |  |  |  |  |  |  |  |  |  |
| 823B-F-SMB-HP-1010 |  | Socketed steel H-Pile (3nos.) |  | 3d | 2011-09-14 A | 2011-09-16 A | 823B-SFE-1010 | 100% |  |  |  | 100% | 100% | 823B_AB | 3 | 3 | nos | 3 |
| 823B-F-SMB-HP-1020 |  | Socketed steel H-Pile (53nos.) |  | 36d | 2011-09-17 A | 2011-10-31 A | 823B-F-SMB-HP-1010 | 100% |  |  |  | 100% | 100% | 823B_AB | 53 | 53 | nos | 53 |
|  | 1 | **Pile cap and ground beam** |  |  | 2012-01-03 | 2012-03-09 |  |  |  |  |  |  |  |  |  |  |  |  |
| 823B-F-SMB-S-1010 |  | GL AA-AD (134m³) |  | 17d | 2012-01-03 A | 2012-01-21 A | 823B-F-SMB-HP-1020 | 100% |  |  | Concrete [136 Cu m] | 100% | 100% | 823B_AB | 134 | 134 | m3 | 134 |
| 823B-F-SMB-S-1020 |  | GL AD-AG (142m³) |  | 18d | 2012-01-26 A | 2012-02-15 A | 823B-F-SMB-S-1010 | 100% |  |  | Concrete [144 Cu m] | 100% | 100% | 823B_AB | 142 | 142 | m3 | 142 |
| 823B-F-SMB-S-1030 |  | GL AG-AK (160m³) |  | 20d | 2012-02-16 A | 2012-03-09 A | 823B-F-SMB-S-1020 | 100% |  |  | Concrete [160 Cu m] | 100% | 100% | 823B_AB | 160 | 160 | m3 | 160 |
|  | 2 | **Column from +13.55 to +23.05** |  |  | 2012-01-30 | 2012-04-05 |  |  |  |  |  |  |  |  |  |  |  |  |
| 823B-F-SMB-S-1040 |  | GL AA-AD (152m³) |  | 19d | 2012-01-30 A | 2012-02-20 A | 823B-F-SMB-S-1010 FS+3d | 100% |  |  | Concrete [152 Cu m] | 100% | 100% | 823B_AB | 152 | 152 | m3 | 152 |
| 823B-F-SMB-S-1050 |  | GL AD-AG (152m³) |  | 19d | 2012-02-21 A | 2012-03-13 A | 823B-F-SMB-S-1020, 823B-F-SMB-S-1040 | 100% |  |  | Concrete [152 Cu m] | 100% | 100% | 823B_AB | 152 | 152 | m3 | 152 |
| 823B-F-SMB-S-1060 |  | GL AG-AK (152m³) |  | 19d | 2012-03-14 A | 2012-04-05 A | 823B-F-SMB-S-1030, 823B-F-SMB-S-1050 | 100% |  |  | Concrete [152 Cu m] | 100% | 100% | 823B_AB | 152 | 152 | m3 | 152 |
|  | 3 | **Ground floor slab and underground utiity** |  |  | 2012-08-20 | 2012-09-15 |  |  |  |  |  |  |  |  |  |  |  |  |
| 823B-F-SMB-S-1090 |  | GL AG-AK (120m³) |  | 15d | 2012-08-20 A | 2012-09-05 A | 823B-F-SMB-S-1160 FS+18d | 100% |  |  | Concrete [120 Cu m] | 100% | 100% | 823B_AB | 120 | 120 | m3 | 120 |
| 823B-F-SMB-S-1070 |  | GL AA-AD (160m³) |  | 20d | 2012-08-24 A | 2012-09-15 A | 823B-F-SMB-S-1170 FS+18d | 100% |  |  | Concrete [160 Cu m] | 100% | 100% | 823B_AB | 160 | 160 | m3 | 160 |
| 823B-F-SMB-S-1080 |  | GL AD-AG (120m³) |  | 15d | 2012-08-29 A | 2012-09-14 A | 823B-F-SMB-S-1180 FS+18d | 100% |  |  | Concrete [120 Cu m] | 100% | 100% | 823B_AB | 120 | 120 | m3 | 120 |
|  | 4 | **Concrete wall from +15.10 to +19.00** |  |  | 2012-09-22 | 2012-11-22 |  |  |  |  |  |  |  |  |  |  |  |  |
| 823B-F-SMB-S-1100 |  | GL AA-AD (160m³) |  | 20d | 2012-09-22 A | 2012-10-17 A | 823B-F-SMB-S-1070 FS+5d | 100% |  |  | Concrete [160 Cu m] | 100% | 100% | 823B_AB | 160 | 160 | m3 | 160 |
| 823B-F-SMB-S-1110 |  | GL AD-AG (120m³) |  | 15d | 2012-10-18 A | 2012-11-05 A | 823B-F-SMB-S-1080, 823B-F-SMB-S-1100 | 100% |  |  | Concrete [120 Cu m] | 100% | 100% | 823B_AB | 120 | 120 | m3 | 120 |
| 823B-F-SMB-S-1120 |  | GL AG-AK (120m³) |  | 15d | 2012-11-06 A | 2012-11-22 A | 823B-F-SMB-S-1090, 823B-F-SMB-S-1110 | 100% |  |  | Concrete [120 Cu m] | 100% | 100% | 823B_AB | 120 | 120 | m3 | 120 |

| ID | WBS | Activity | Duration | Start | Finish | Predecessors | Complete | Planned start | Planned finish | Resources | user_text4 | user_text6 | user_text7 | user_integer1 | user_text1 | user_text5 | 823B_As-built |
| --- | --- | --- | --- | --- | --- | --- | --- | --- | --- | --- | --- | --- | --- | --- | --- | --- | --- |
|  | 5 | **Concrete wall from +19.00 to U1 level at +23.05** |  | 2012-10-25 | 2013-01-30 |  |  |  |  |  |  |  |  |  |  |  |  |
| 823B-F-SMB-S-1130 |  | GL AA-AD (160m³) | 20d | 2012-10-25 A | 2012-11-16 A | 823B-F-SMB-S-1100 FS+5d | 100% |  |  | Concrete [160 Cu m] | 160 | 100% | 100% | 160 | m3 | 160 | 823B_AB |
| 823B-F-SMB-S-1140 |  | GL AD-AG (120m³) | 15d | 2012-11-17 A | 2012-12-04 A | 823B-F-SMB-S-1110, 823B-F-SMB-S-1130 | 100% |  |  | Concrete [120 Cu m] | 120 | 100% | 100% | 120 | m3 | 120 | 823B_AB |
| 823B-F-SMB-S-1150 |  | GL AG-AK (120m³) | 15d | 2012-12-05 A | 2013-01-30 A | 823B-F-SMB-S-1120, 823B-F-SMB-S-1140 | 100% | 2012-12-05 | 2012-12-21 | Concrete [120 Cu m] | 120 | 100% | 100% | 120 | m3 | 120 | 823B_AB |
|  | 6 | **U1 slab at +23.05** |  | 2012-07-16 | 2012-08-07 |  |  |  |  |  |  |  |  |  |  |  |  |
| 823B-F-SMB-S-1160 |  | GL AG-AK (96m³) | 12d | 2012-07-16 A | 2012-07-28 A | 823B-F-SMB-S-1060 FS+79d | 100% |  |  | Concrete [96 Cu m] | 96 | 100% | 100% | 96 | m3 | 96 | 823B_AB |
| 823B-F-SMB-S-1170 |  | GL AA-AD (96m³) | 12d | 2012-07-20 A | 2012-08-02 A | 823B-F-SMB-S-1040 FS+121d | 100% |  |  | Concrete [96 Cu m] | 96 | 100% | 100% | 96 | m3 | 96 | 823B_AB |
| 823B-F-SMB-S-1180 |  | GL AD-AG (96m³) | 12d | 2012-07-25 A | 2012-08-07 A | 823B-F-SMB-S-1170 FS-8d | 100% |  |  | Concrete [96 Cu m] | 96 | 100% | 100% | 96 | m3 | 96 | 823B_AB |
|  | 7 | **Concrete wall from +23.05 to +26.05** |  | 2012-07-30 | 2012-09-19 |  |  |  |  |  |  |  |  |  |  |  |  |
| 823B-F-SMB-S-1190 |  | GL AG-AK (120m³) | 15d | 2012-07-30 A | 2012-08-15 A | 823B-F-SMB-S-1160 | 100% |  |  | Concrete [120 Cu m] | 120 | 100% | 100% | 120 | m3 | 120 | 823B_AB |
| 823B-F-SMB-S-1200 |  | GL AA-AD (120m³) | 15d | 2012-08-16 A | 2012-09-01 A | 823B-F-SMB-S-1170, 823B-F-SMB-S-1190 | 100% |  |  | Concrete [120 Cu m] | 120 | 100% | 100% | 120 | m3 | 120 | 823B_AB |
| 823B-F-SMB-S-1210 |  | GL AD-AG (120m³) | 15d | 2012-09-03 A | 2012-09-19 A | 823B-F-SMB-S-1180, 823B-F-SMB-S-1200 | 100% |  |  | Concrete [120 Cu m] | 120 | 100% | 100% | 120 | m3 | 120 | 823B_AB |
|  | 8 | **Concrete wall from +26.05 to U2 level +28.35** |  | 2012-08-16 | 2012-10-05 |  |  |  |  |  |  |  |  |  |  |  |  |
| 823B-F-SMB-S-1220 |  | GL AG-AK (120m³) | 15d | 2012-08-16 A | 2012-09-01 A | 823B-F-SMB-S-1190 | 100% |  |  | Concrete [120 Cu m] | 120 | 100% | 100% | 120 | m3 | 120 | 823B_AB |
| 823B-F-SMB-S-1230 |  | GL AA-AD (120m³) | 15d | 2012-09-03 A | 2012-09-19 A | 823B-F-SMB-S-1200, 823B-F-SMB-S-1220 | 100% |  |  | Concrete [120 Cu m] | 120 | 100% | 100% | 120 | m3 | 120 | 823B_AB |
| 823B-F-SMB-S-1240 |  | GL AD-AG (120m³) | 12d | 2012-09-20 A | 2012-10-05 A | 823B-F-SMB-S-1210, 823B-F-SMB-S-1230 | 100% |  |  | Concrete [96 Cu m] | 120 | 100% | 100% | 120 | m3 | 120 | 823B_AB |
|  | 9 | **U2 slab at +28.35** |  | 2012-09-03 | 2012-10-19 |  |  |  |  |  |  |  |  |  |  |  |  |
| 823B-F-SMB-S-1250 |  | GL AG-AK (96m³) | 12d | 2012-09-03 A | 2012-09-15 A | 823B-F-SMB-S-1220 | 100% |  |  | Concrete [96 Cu m] | 96 | 100% | 100% | 96 | m3 | 96 | 823B_AB |
| 823B-F-SMB-S-1260 |  | GL AA-AD (96m³) | 12d | 2012-09-20 A | 2012-10-05 A | 823B-F-SMB-S-1230, 823B-F-SMB-S-1250 | 100% |  |  | Concrete [96 Cu m] | 96 | 100% | 100% | 96 | m3 | 96 | 823B_AB |
| 823B-F-SMB-S-1270 |  | GL AD-AG (96m³) | 12d | 2012-10-06 A | 2012-10-19 A | 823B-F-SMB-S-1240, 823B-F-SMB-S-1260 | 100% |  |  | Concrete [96 Cu m] | 96 | 100% | 100% | 96 | m3 | 96 | 823B_AB |
|  | 10 | **Concrete wall and column from +28.35 to R/F at +33.80** |  | 2012-10-06 | 2012-11-01 |  |  |  |  |  |  |  |  |  |  |  |  |
| 823B-F-SMB-S-1280 |  | GL AA-AD (80m³) | 10d | 2012-10-06 A | 2012-10-17 A | 823B-F-SMB-S-1260 | 100% |  |  | Concrete [80 Cu m] | 80 | 100% | 100% | 80 | m3 | 80 | 823B_AB |
| 823B-F-SMB-S-1290 |  | GL AD-AG (80m³) | 10d | 2012-10-20 A | 2012-11-01 A | 823B-F-SMB-S-1280, 823B-F-SMB-S-1270 | 100% |  |  | Concrete [80 Cu m] | 80 | 100% | 100% | 80 | m3 | 80 | 823B_AB |
|  | 11 | **R/F slab at +33.80** |  | 2012-10-18 | 2012-11-13 |  |  |  |  |  |  |  |  |  |  |  |  |
| 823B-F-SMB-S-1300 |  | GL AA-AD (80m³) | 10d | 2012-10-18 A | 2012-10-30 A | 823B-F-SMB-S-1280 | 100% |  |  | Concrete [80 Cu m] | 80 | 100% | 100% | 80 | m3 | 80 | 823B_AB |
| 823B-F-SMB-S-1310 |  | GL AD-AG (80m³) | 10d | 2012-11-02 A | 2012-11-13 A | 823B-F-SMB-S-1290 | 100% |  |  | Concrete [80 Cu m] | 80 | 100% | 100% | 80 | m3 | 80 | 823B_AB |

| ID | WBS | Activity | Duration | Start | Finish | Predecessors | Complete | Planned start | Planned finish | user_text6 | user_text7 | 823B_As-built |
| --- | --- | --- | --- | --- | --- | --- | --- | --- | --- | --- | --- | --- |
|  | 2 | **ABWF** |  | 2012-11-13 | 2015-04-16 |  |  |  |  |  |  |  |
|  | 1 | **@ G/F Level** |  | 2013-01-24 | 2015-02-28 |  |  |  |  |  |  |  |
| 823B-F-SMB-A-1070 |  | Wet trade (Rendering, plastering, screeding) | 52d | 2013-01-24 A | 2013-03-28 A | 823B-F-SMB-A-1030 | 100% |  |  | 100% | 100% | 823B_AB |
| 823B-F-SMB-A-1010 |  | Door frame | 28d | 2013-04-27 A | 2013-05-31 A | 823B-F-SMB-A-1030, 823B-F-SMB-A-1040 | 100% | 2013-02-18 | 2013-03-21 | 100% | 100% | 823B_AB |
| 823B-F-SMB-A-1030 |  | Metal work (Catladder, cable trench cover, access panel…etc.) | 43d | 2013-06-01 A | 2013-07-25 A | 823B-F-SMB-S-1160 FS+20d, 823B-F-SMB-S-1170 FS+20d, 823B-F-SMB-S-1180 FS+20d | 100% | 2012-12-01 | 2013-01-23 | 100% | 100% | 823B_AB |
| 823B-F-SMB-A-1040 |  | Structure steel | 43d | 2013-06-01 A | 2013-06-29 A | 823B-F-SMB-S-1160 FS+20d, 823B-F-SMB-S-1170 FS+20d, 823B-F-SMB-S-1180 FS+20d, 823B-F-SMB-S-1130, 823B-F-SMB-S-1140, 823B-F-SMB-S-1150 | 100% | 2012-12-22 | 2013-02-16 | 100% | 100% | 823B_AB |
| 823B-F-SMB-A-1050 |  | Window and louvre frame | 55d | 2013-06-01 A | 2013-11-16 A | 823B-F-SMB-S-1300 FS+83d, 823B-F-SMB-S-1310 FS+83d | 100% | 2013-02-26 | 2013-05-06 | 100% | 100% | 823B_AB |
| 823B-F-SMB-A-1090 |  | Ceiling, wall and floor coating | 42d | 2013-06-01 A | 2013-06-29 A | 823B-F-SMB-A-1080 SS+19d | 100% | 2013-03-20 | 2013-05-13 | 100% | 100% | 823B_AB |
| 823B-F-SMB-A-1100 |  | Ceiling, wall and floor final coat | 27d | 2013-06-01 A | 2013-08-31 A | 823B-F-SMB-A-1060, 823B-F-SMB-A-1090, 823B-F-SMB-A-1120, 823B-PRO-1020 | 100% | 2013-08-22 | 2013-09-23 | 100% | 100% | 823B_AB |
| 823B-F-SMB-A-1110 |  | Celing grid and service panel | 37d | 2013-06-01 A | 2013-06-29 A | 823B-F-SMB-A-1090 FS+55d | 100% | 2013-07-20 | 2013-08-31 | 100% | 100% | 823B_AB |
| 823B-F-SMB-A-1080 |  | Wall and floor tiling | 81d | 2013-06-24 A | 2013-08-20 A | 823B-F-SMB-A-1070 SS+25d | 100% | 2013-02-26 | 2013-06-06 | 100% | 100% | 823B_AB |
| 823B-F-SMB-A-1060 |  | Window glass and louvre blade | 54d | 2013-09-02 A | 2014-03-25 A | 823B-F-SMB-A-1050, 823B-PRO-1020 | 100% | 2013-05-07 | 2013-07-11 | 100% | 100% | 823B_AB |
| 823B-F-SMB-A-1120 |  | Ceiling panel | 35d | 2013-09-02 A | 2013-09-28 A | 823B-F-SMB-A-1060, 823B-F-SMB-A-1090 | 100% | 2013-07-12 | 2013-08-21 | 100% | 100% | 823B_AB |
| 823B-F-SMB-A-1130 |  | Joinery and furniture | 37d | 2014-08-01 A | 2015-02-02 A | 823B-F-SMB-A-1080 FS+26d, 823B-F-SMB-A-1140, 823B-F-SMB-A-1100 | 100% | 2014-09-16 | 2014-10-30 | 100% | 100% | 823B_AB |
| 823B-F-SMB-A-1020 |  | Door and ironmongery | 57d | 2014-09-01 A | 2014-09-30 A | 823B-F-SMB-A-1010 FS+118d, 823B-F-SMB-A-1050, 823B-F-SMB-A-1080, 823B-F-SMB-A-1090, 823B-F-SMB-A-1120 | 100% | 2014-09-01 | 2014-11-08 | 100% | 100% | 823B_AB |
| 823B-F-SMB-A-1140 |  | Signage | 38d | 2015-02-02 A | 2015-02-28 A | 823B-F-SMB-A-1060, 823B-F-SMB-A-1120 | 100% | 2015-02-02 | 2015-03-20 | 100% | 100% | 823B_AB |
|  | 2 | **@ U1 Level** |  | 2012-11-13 | 2015-02-28 |  |  |  |  |  |  |  |
| 823B-F-SMB-A-2010 |  | Blockwall | 56d | 2012-11-13 A | 2013-01-19 A | 823B-F-SMB-S-1250 FS+19d, 823B-F-SMB-S-1260 FS+19d, 823B-F-SMB-S-1270 FS+19d | 100% |  |  | 100% | 100% | 823B_AB |
| 823B-F-SMB-A-2040 |  | Metal work (Catladder, cable trench cover, access panel…etc.) | 42d | 2012-11-21 A | 2013-01-11 A | 823B-F-SMB-A-2010 SS+7d, 823B-F-SMB-S-1250 FS+21d, 823B-F-SMB-S-1260 FS+21d, 823B-F-SMB-S-1270 FS+21d | 100% |  |  | 100% | 100% | 823B_AB |
| 823B-F-SMB-A-2070 |  | Wet trade (Rendering, plastering, acreeding) | 39d | 2013-02-04 A | 2013-03-23 A | 823B-F-SMB-A-2010, 823B-F-SMB-A-2020 | 100% |  |  | 100% | 100% | 823B_AB |
| 823B-F-SMB-A-2020 |  | Door frame | 19d | 2013-06-01 A | 2013-06-24 A | 823B-F-SMB-A-2040 | 100% | 2013-01-12 | 2013-02-02 | 100% | 100% | 823B_AB |
| 823B-F-SMB-A-2050 |  | Window and louvre frame | 57d | 2013-06-01 A | 2013-11-18 A | 823B-F-SMB-A-2010 SS+13d | 100% | 2012-12-01 | 2013-02-08 | 100% | 100% | 823B_AB |
| 823B-F-SMB-A-2080 |  | Wall and floor tiling | 82d | 2013-06-25 A | 2013-08-31 A | 823B-F-SMB-A-2070 SS+24d | 100% | 2013-03-07 | 2013-06-18 | 100% | 100% | 823B_AB |
| 823B-F-SMB-A-2060 |  | Window glass and louvre blade | 52d | 2013-09-02 A | 2014-03-24 A | 823B-F-SMB-A-2050 | 100% | 2013-02-09 | 2013-04-18 | 100% | 100% | 823B_AB |
| 823B-F-SMB-A-2090 |  | Ceiling, wall and floor coating | 43d | 2013-09-02 A | 2013-10-28 A | 823B-F-SMB-A-2080 SS+14d, 823B-PRO-1020 | 100% | 2013-03-23 | 2013-05-18 | 100% | 100% | 823B_AB |
| 823B-F-SMB-A-2110 |  | Celing grid and service panel | 33d | 2013-09-12 A | 2013-10-22 A | 823B-F-SMB-A-2090 SS+9d, 823B-PRO-1020 | 100% | 2013-04-08 | 2013-05-16 | 100% | 100% | 823B_AB |
| 823B-F-SMB-A-2100 |  | Ceiling, wall and floor final coat | 27d | 2013-10-02 A | 2013-10-31 A | 823B-F-SMB-A-2030, 823B-F-SMB-A-2050, 823B-F-SMB-A-2080, 823B-F-SMB-A-2090, 823B-F-SMB-A-2120, 823B-F-SMB-A-2140 SS | 100% | 2013-08-23 | 2013-09-24 | 100% | 100% | 823B_AB |
| 823B-F-SMB-A-2120 |  | Ceiling panel | 23d | 2013-10-04 A | 2013-10-31 A | 823B-F-SMB-A-2110 | 100% | 2013-05-18 | 2013-06-14 | 100% | 100% | 823B_AB |
| 823B-F-SMB-A-2130 |  | Joinery and furniture | 48d | 2014-08-01 A | 2015-02-02 A | 823B-F-SMB-A-2080, 823B-F-SMB-A-2140 | 100% | 2014-11-18 | 2015-01-15 | 100% | 100% | 823B_AB |
| 823B-F-SMB-A-2030 |  | Door and ironmongery | 55d | 2014-09-01 A | 2014-09-30 A | 823B-F-SMB-A-2020, 823B-F-SMB-A-2060, 823B-F-SMB-A-2120, 823B-F-SMB-A-2080 | 100% | 2014-09-01 | 2014-11-06 | 100% | 100% | 823B_AB |
| 823B-F-SMB-A-2140 |  | Signage | 35d | 2015-02-02 A | 2015-02-28 A | 823B-F-SMB-A-2030, 823B-F-SMB-A-2050, 823B-F-SMB-A-2120 | 100% | 2015-02-02 | 2015-03-17 | 100% | 100% | 823B_AB |

| ID | WBS | Activity | Duration | Start | Finish | Predecessors | Complete | Planned start | Planned finish | Resources | user_text6 | user_text7 | 823B_As-built | user_text4 | user_integer1 | user_text1 | user_text5 |
| --- | --- | --- | --- | --- | --- | --- | --- | --- | --- | --- | --- | --- | --- | --- | --- | --- | --- |
|  | 3 | **@ U2 Level** |  | 2012-12-01 | 2015-04-16 |  |  |  |  |  |  |  |  |  |  |  |  |
| 823B-F-SMB-A-3140 |  | Roof railing | 42d | 2012-12-01 A | 2013-01-22 A | 823B-F-SMB-S-1250 FS+12d | 100% |  |  |  | 100% | 100% | 823B_AB |  |  |  |  |
| 823B-F-SMB-A-3010 |  | Blockwall | 27d | 2012-12-13 A | 2013-01-16 A | 823B-F-SMB-S-1300 FS+25d, 823B-F-SMB-S-1310 FS+25d | 100% |  |  |  | 100% | 100% | 823B_AB |  |  |  |  |
| 823B-F-SMB-A-3080 |  | Roof Waterproofing system | 40d | 2013-02-04 A | 2013-03-25 A | 823B-F-SMB-A-3050, 823B-F-SMB-A-3140 | 100% |  |  |  | 100% | 100% | 823B_AB |  |  |  |  |
| 823B-F-SMB-A-3090 |  | Protection screed for waterproofing | 40d | 2013-02-07 A | 2013-03-28 A | 823B-F-SMB-A-3080 SS+3d | 100% |  |  |  | 100% | 100% | 823B_AB |  |  |  |  |
| 823B-F-SMB-A-3100 |  | Wet trade (Rendering, plastering, acreeding) | 29d | 2013-02-15 A | 2013-03-20 A | 823B-F-SMB-A-3010, 823B-F-SMB-A-3020 | 100% |  |  |  | 100% | 100% | 823B_AB |  |  |  |  |
| 823B-F-SMB-A-3040 |  | Metal work (Catladder, cable trench cover, access panel…etc.) | 27d | 2013-06-01 A | 2013-07-04 A | 823B-F-SMB-S-1300 FS+25d, 823B-F-SMB-S-1310 FS+25d | 100% | 2012-12-13 | 2013-01-16 |  | 100% | 100% | 823B_AB |  |  |  |  |
| 823B-F-SMB-A-3050 |  | Louvre wall structure steel | 42d | 2013-06-01 A | 2013-10-11 A | 823B-F-SMB-S-1300 FS+25d, 823B-F-SMB-S-1310 FS+25d | 100% | 2012-12-13 | 2013-02-02 |  | 100% | 100% | 823B_AB |  |  |  |  |
| 823B-F-SMB-A-3110 |  | Ceiling, wall and floor coating | 53d | 2013-06-01 A | 2013-06-29 A | 823B-F-SMB-A-3100 | 100% | 2013-03-21 | 2013-05-28 |  | 100% | 100% | 823B_AB |  |  |  |  |
| 823B-F-SMB-A-3020 |  | Door frame | 7d | 2013-06-23 A | 2013-06-30 A | 823B-F-SMB-A-3040, 823B-F-SMB-A-3050 | 100% | 2013-02-04 | 2013-02-14 |  | 100% | 100% | 823B_AB |  |  |  |  |
| 823B-F-SMB-A-3120 |  | Ceiling, wall and floor final coat | 29d | 2013-10-02 A | 2013-10-31 A | 823B-F-SMB-A-3030, 823B-F-SMB-A-3110, 823B-F-SMB-A-3130 | 100% | 2013-08-06 | 2013-09-07 |  | 100% | 100% | 823B_AB |  |  |  |  |
| 823B-F-SMB-A-3060 |  | Louvre frame | 41d | 2013-10-12 A | 2013-11-23 A | 823B-F-SMB-A-3050 | 100% | 2013-02-04 | 2013-03-26 |  | 100% | 100% | 823B_AB |  |  |  |  |
| 823B-F-SMB-A-3070 |  | Louvre blade | 67d | 2013-11-25 A | 2014-03-24 A | 823B-F-SMB-A-3060, 823B-PRO-1020 | 100% | 2013-03-27 | 2013-06-20 |  | 100% | 100% | 823B_AB |  |  |  |  |
| 823B-F-SMB-A-3030 |  | Door and ironmongery | 18d | 2014-09-01 A | 2014-09-22 A | 823B-F-SMB-A-3020, 823B-F-SMB-A-3070, 823B-F-SMB-A-3110 | 100% |  |  |  | 100% | 100% | 823B_AB |  |  |  |  |
| 823B-F-SMB-A-3130 |  | Signage | 20d | 2015-02-02 A | 2015-02-27 A | 823B-F-SMB-A-3030, 823B-F-SMB-A-3070, 823B-F-SMB-A-3110 | 100% |  |  |  | 100% | 100% | 823B_AB |  |  |  |  |
| 823B-F-SMB-A-3150 |  | Green roof system | 53d | 2015-03-02 A | 2015-04-16 A | 823B-F-SMB-A-3130 SS | 100% | 2015-03-02 | 2015-05-07 |  | 100% | 100% | 823B_AB |  |  |  |  |
|  | 3 | **Builder's Work in Connection with Services** |  | 2012-12-01 | 2013-03-28 |  |  |  |  |  |  |  |  |  |  |  |  |
| 823B-F-SMB-B-1000 |  | Pipe laying (stormwater system) | 47d | 2012-12-01 A | 2013-01-28 A | 823B-F-SMB-S-1300, 823B-F-SMB-S-1310 | 100% |  |  |  | 100% | 100% | 823B_AB |  |  |  |  |
| 823B-F-SMB-B-2000 |  | Pipe laying (foulwater system) | 48d | 2013-01-29 A | 2013-03-28 A | 823B-F-SMB-B-1000 | 100% |  |  |  | 100% | 100% | 823B_AB |  |  |  |  |
| 823B-F-SMB-B-3000 |  | Earthing (main earthing & lighting protection system) | 36d | 2013-02-15 A | 2013-03-28 A | 823B-F-SMB-B-1000, 823B-F-SMB-B-2000 SS+12d | 100% |  |  |  | 100% | 100% | 823B_AB |  |  |  |  |
|  | 4 | **Toilet Evacuation Plant Room** |  | 2012-01-13 | 2012-08-31 |  |  |  |  |  |  |  |  |  |  |  |  |
|  | 1 | **Excavation** |  | 2012-02-01 | 2012-03-05 |  |  |  |  |  |  |  |  |  |  |  |  |
| 823B-F-TPR-1010 |  | Excavate whole area up to +8.80mPD (2,076m³) | 6d | 2012-02-01 A | 2012-02-07 A | 823B-F-SMB-S-1010, 823B-F-SMB-S-1020 SS, 823B-F-SMB-HP-1020 | 100% |  |  | Excavation [2076 Cu m] | 100% | 100% | 823B_AB | 2076 | 2076 | m3 | 2076 |
| 823B-F-TPR-1020 |  | Excavate plant room area up to +7.20mPD (300m³) | 1d | 2012-02-08 A | 2012-02-08 A | 823B-F-TPR-1010 | 100% |  |  | Excavation [300 Cu m] | 100% | 100% | 823B_AB | 300 | 300 | m3 | 300 |
| 823B-F-TPR-1030 |  | Excavate stair ST-05 area up to +7.60mPD (78m³) | 1d | 2012-02-09 A | 2012-02-09 A | 823B-F-TPR-1020 | 100% |  |  | Excavation [78 Cu m] | 100% | 100% | 823B_AB | 78 | 78 | m3 | 78 |
| 823B-F-TPR-1040 |  | Blinding and bond type waterproofing membrane (stair ST-05) | 2d | 2012-02-10 A | 2012-02-11 A | 823B-F-TPR-1030 | 100% |  |  |  | 100% | 100% | 823B_AB |  |  |  |  |
| 823B-F-TPR-1050 |  | Blinding and bond type waterproofing membrane (evacuation plant) | 2d | 2012-03-03 A | 2012-03-05 A | 823B-F-TPR-1020, 823B-F-TPR-1040 | 100% |  |  |  | 100% | 100% | 823B_AB |  |  |  |  |

| ID | WBS | Activity | Duration | Start | Finish | Predecessors | Complete | Resources | user_text4 | user_text6 | user_text7 | user_integer1 | user_text1 | user_text5 | 823B_As-built |
| --- | --- | --- | --- | --- | --- | --- | --- | --- | --- | --- | --- | --- | --- | --- | --- |
|  | 2 | **Plant Room** |  | 2012-03-28 | 2012-05-21 |  |  |  |  |  |  |  |  |  |  |
| 823B-F-TPR-1060 |  | Construct base slab of plant room (58m³) | 6d | 2012-03-28 A | 2012-04-03 A | 823B-F-TPR-1040, 823B-F-TPR-1050 | 100% | Concrete [58 Cu m]; Concrete (Buildings & External) [58 Cu m]; Rebar [8 t] | 58 | 100% | 100% | 58 | m3 | 58 | 823B_AB |
| 823B-F-TPR-1070 |  | Construct wall up to +12.90mPD (38m³) | 29d | 2012-04-05 A | 2012-05-12 A | 823B-F-TPR-1060 | 100% | Concrete [38 Cu m]; Concrete (Buildings & External) [38 Cu m]; Rebar [6 t] | 38 | 100% | 100% | 38 | m3 | 38 | 823B_AB |
| 823B-F-TPR-1080 |  | Construct slab at +12.90mPD (113m³) | 30d | 2012-04-16 A | 2012-05-21 A | 823B-F-TPR-1070 | 100% | Concrete [113 Cu m]; Concrete (Buildings & External) [113 Cu m]; Rebar [18 t] | 113 | 100% | 100% | 113 | m3 | 113 | 823B_AB |
| 823B-F-TPR-1090 |  | Construct access cover concrete wall (18m³) | 21d | 2012-04-18 A | 2012-05-12 A | 823B-F-TPR-1080 | 100% | Concrete [18 Cu m]; Concrete (Buildings & External) [18 Cu m]; Rebar [3 t] | 18 | 100% | 100% | 18 | m3 | 18 | 823B_AB |
| 823B-F-TPR-1100 |  | Construct wall up to +11.55mPD (103m³) | 15d | 2012-04-25 A | 2012-05-12 A | 823B-F-TPR-1060, 823B-F-TPR-1120 | 100% | Concrete [103 Cu m]; Concrete (Buildings & External) [103 Cu m]; Rebar [16 t] | 103 | 100% | 100% | 103 | m3 | 103 | 823B_AB |
| 823B-F-TPR-1110 |  | Construct slab at +11.55mPD (2m³) | 15d | 2012-04-25 A | 2012-05-12 A | 823B-F-TPR-1100, 823B-F-TPR-1130 | 100% | Concrete [2 Cu m]; Concrete (Buildings & External) [2 Cu m]; Rebar [1 t] | 2 | 100% | 100% | 2 | m3 | 2 | 823B_AB |
|  | 3 | **Stair ST-05** |  | 2012-02-13 | 2012-08-31 |  |  |  |  |  |  |  |  |  |  |
| 823B-F-TPR-1120 |  | Construct base slab of stair area (9m³) | 12d | 2012-02-13 A | 2012-02-25 A | 823B-F-TPR-1040 | 100% | Rebar [2 t]; Concrete (Buildings & External) [9 Cu m]; Concrete [9 Cu m] | 9 | 100% | 100% | 9 | m3 | 9 | 823B_AB |
| 823B-F-TPR-1130 |  | Construct wall up to +11.55mPD (30m³) | 19d | 2012-02-27 A | 2012-03-19 A | 823B-F-TPR-1120 | 100% | Rebar [5 t]; Concrete (Buildings & External) [30 Cu m]; Concrete [30 Cu m] | 30 | 100% | 100% | 30 | m3 | 30 | 823B_AB |
| 823B-F-TPR-1140 |  | Construct stair up to +11.55mPD (6m³) | 10d | 2012-03-12 A | 2012-03-22 A | 823B-F-TPR-1130 | 100% | Rebar [2 t]; Concrete (Buildings & External) [6 Cu m]; Concrete [6 Cu m] | 6 | 100% | 100% | 6 | m3 | 6 | 823B_AB |
| 823B-F-TPR-1150 |  | Construct wall up to +15.15mPD (31m³) | 60d | 2012-05-24 A | 2012-08-04 A | 823B-F-TPR-1130, 823B-F-TPR-1140, 823B-F-TPR-1110 | 100% | Rebar [5 t]; Concrete (Buildings & External) [31 Cu m]; Concrete [31 Cu m] | 31 | 100% | 100% | 31 | m3 | 31 | 823B_AB |
| 823B-F-TPR-1160 |  | Construct stair up to +15.15mPD (6m³) | 27d | 2012-08-01 A | 2012-08-31 A | 823B-F-TPR-1150 | 100% | Rebar [2 t]; Concrete (Buildings & External) [6 Cu m]; Concrete [6 Cu m] | 6 | 100% | 100% | 6 | m3 | 6 | 823B_AB |
|  | 4 | **Backfilling** |  | 2012-01-13 | 2012-08-25 |  |  |  |  |  |  |  |  |  |  |
| 823B-F-TPR-1190 |  | Construct trench for toilet discharge pipe (8m³) | 137d | 2012-01-13 A | 2012-07-03 A | 823B-F-TPR-1180 | 100% | Concrete [8 Cu m]; Concrete (Buildings & External) [8 Cu m]; Rebar [2 t] | 8 | 100% | 100% | 8 | m3 | 8 | 823B_AB |
| 823B-F-TPR-1180 |  | Backfill to +8.80mPD (120m³) | 3d | 2012-06-11 A | 2012-06-13 A | 823B-F-TPR-1170 | 100% | Backfilling [120 Cu m] | 120 | 100% | 100% | 120 | m3 | 120 | 823B_AB |
| 823B-F-TPR-1170 |  | Waterproofing | 11d | 2012-07-03 A | 2012-07-14 A | 823B-F-TPR-1090, 823B-F-TPR-1160 | 100% |  |  | 100% | 100% |  |  |  | 823B_AB |
| 823B-F-TPR-1200 |  | Backfill to +10.50mPD (150m³) | 3d | 2012-07-04 A | 2012-07-06 A | 823B-F-TPR-1190 | 100% | Backfilling [150 Cu m] | 150 | 100% | 100% | 150 | m3 | 150 | 823B_AB |
| 823B-F-TPR-1210 |  | Backfill to +13.50mPD (200m³) | 4d | 2012-07-07 A | 2012-07-11 A | 823B-F-TPR-1200 | 100% | Backfilling [200 Cu m] | 200 | 100% | 100% | 200 | m3 | 200 | 823B_AB |
| 823B-F-TPR-1220 |  | Backfill to +15.00mPD (400m³) | 6d | 2012-08-20 A | 2012-08-25 A | 823B-F-TPR-1210 | 100% | Backfilling [400 Cu m] | 400 | 100% | 100% | 400 | m3 | 400 | 823B_AB |
|  | G | **INFRASTRUCTURE, BUILDING MAINTENANCE & PWAY BUILDINGS (IBP)** |  | 2012-07-23 | 2015-09-05 |  |  |  |  |  |  |  |  |  |  |
|  | 1 | **STRUCTURE** |  | 2012-07-23 | 2013-02-02 |  |  |  |  |  |  |  |  |  |  |
|  | 1 | **Excavation for strip footing** |  | 2012-07-23 | 2012-08-25 |  |  |  |  |  |  |  |  |  |  |
| 823B-G-IBP-S-1010 |  | GL 1-5 (581m³) | 6d | 2012-07-23 A | 2012-07-28 A | 823B-ERS-A4-DW-1010 SS | 100% | Excavation [581 Cu m] | 581 | 100% | 100% | 581 | m3 | 581 | 823B_AB |
| 823B-G-IBP-S-1020 |  | GL 6-10 (986m³) | 12d | 2012-07-30 A | 2012-08-11 A | 823B-G-IBP-S-1010, 823B-ERS-A4-DW-1010 SS | 100% | Excavation [986 Cu m] | 986 | 100% | 100% | 986 | m3 | 986 | 823B_AB |
| 823B-G-IBP-S-1030 |  | GL 11-18 (1055m³) | 12d | 2012-08-13 A | 2012-08-25 A | 823B-ERS-A4-DW-1010 | 100% | Excavation [1055 Cu m] | 1055 | 100% | 100% | 1055 | m3 | 1005 | 823B_AB |

| ID | WBS | Activity | Duration | Start | Finish | Predecessors | Complete | Planned start | Planned finish | Resources | user_text4 | user_text6 | user_text7 | user_integer1 | user_text1 | user_text5 | 823B_As-built |
| --- | --- | --- | --- | --- | --- | --- | --- | --- | --- | --- | --- | --- | --- | --- | --- | --- | --- |
|  | 2 | **Strip footing** |  | 2012-08-06 | 2012-09-19 |  |  |  |  |  |  |  |  |  |  |  |  |
| 823B-G-IBP-S-1040 |  | GL 1-5 (206m³) | 18d | 2012-08-06 A | 2012-08-25 A | 823B-G-IBP-S-1010 FS+3d | 100% |  |  | Concrete [206 Cu m] | 206 | 100% | 100% | 206 | m3 | 206 | 823B_AB |
| 823B-G-IBP-S-1050 |  | GL 6-10 (409m³) | 39d | 2012-08-06 A | 2012-09-19 A | 823B-G-IBP-S-1040, 823B-G-IBP-S-1020 | 100% |  |  | Concrete [409 Cu m] | 409 | 100% | 100% | 409 | m3 | 409 | 823B_AB |
| 823B-G-IBP-S-1060 |  | GL 11-18 (331m³) | 18d | 2012-08-20 A | 2012-09-08 A | 823B-G-IBP-S-1030 | 100% |  |  | Concrete [331 Cu m] | 331 | 100% | 100% | 331 | m3 | 331 | 823B_AB |
|  | 3 | **Column from +13.55 to R/F +22.90** |  | 2012-08-27 | 2012-12-08 |  |  |  |  |  |  |  |  |  |  |  |  |
| 823B-G-IBP-S-1070 |  | GL 1-5 (71m³) | 40d | 2012-08-27 A | 2012-10-13 A | 823B-G-IBP-S-1040 | 100% |  |  | Concrete [71 Cu m] | 71 | 100% | 100% | 71 | m3 | 71 | 823B_AB |
| 823B-G-IBP-S-1080 |  | GL 6-10 (81m³) | 87d | 2012-08-27 A | 2012-12-08 A | 823B-G-IBP-S-1050 SS, 823B-G-IBP-S-1070 SS | 100% |  |  | Concrete [81 Cu m] | 81 | 100% | 100% | 81 | m3 | 81 | 823B_AB |
| 823B-G-IBP-S-1090 |  | GL 11-18 (113m³) | 83d | 2012-08-30 A | 2012-12-07 A | 823B-G-IBP-S-1060 | 100% |  |  | Concrete [113 Cu m] | 113 | 100% | 100% | 113 | m3 | 113 | 823B_AB |
|  | 4 | **Backfilling and underground services** |  | 2012-09-10 | 2012-10-18 |  |  |  |  |  |  |  |  |  |  |  |  |
| 823B-G-IBP-S-1100 |  | GL 1-5 | 12d | 2012-09-10 A | 2012-09-22 A | 823B-G-IBP-S-1070 | 100% |  |  |  |  | 100% | 100% |  |  |  | 823B_AB |
| 823B-G-IBP-S-1110 |  | GL 6-10 | 10d | 2012-09-27 A | 2012-10-10 A | 823B-G-IBP-S-1080 SS, 823B-G-IBP-S-1100 | 100% |  |  |  |  | 100% | 100% |  |  |  | 823B_AB |
| 823B-G-IBP-S-1120 |  | GL 11-18 | 16d | 2012-09-28 A | 2012-10-18 A | 823B-G-IBP-S-1090 SS | 100% |  |  |  |  | 100% | 100% |  |  |  | 823B_AB |
|  | 5 | **Ground floor slab at +15.20 G/F** |  | 2012-10-17 | 2012-11-17 |  |  |  |  |  |  |  |  |  |  |  |  |
| 823B-G-IBP-S-1140 |  | GL 6-10 (103m³) | 23d | 2012-10-17 A | 2012-11-13 A | 823B-G-IBP-S-1110, 823B-G-IBP-S-1130 | 100% |  |  | Concrete [103 Cu m] | 103 | 100% | 100% | 103 | m3 | 103 | 823B_AB |
| 823B-G-IBP-S-1130 |  | GL 1-5 (219m³) | 22d | 2012-10-22 A | 2012-11-16 A | 823B-G-IBP-S-1100 | 100% |  |  | Concrete [219 Cu m] | 219 | 100% | 100% | 219 | m3 | 219 | 823B_AB |
| 823B-G-IBP-S-1150 |  | GL 11-18 (299m³) | 23d | 2012-10-22 A | 2012-11-17 A | 823B-G-IBP-S-1120 | 100% |  |  | Concrete [299 Cu m] | 299 | 100% | 100% | 299 | m3 | 299 | 823B_AB |
|  | 6 | **Concrete wall from +15.20 to +18.20** |  | 2012-09-13 | 2013-01-18 |  |  |  |  |  |  |  |  |  |  |  |  |
| 823B-G-IBP-S-1180 |  | GL 11-18 (189m³) | 86d | 2012-09-13 A | 2013-01-18 A | 823B-G-IBP-S-1150 SS | 100% | 2012-09-13 | 2012-12-27 | Concrete [189 Cu m] | 189 | 100% | 100% | 189 | m3 | 189 | 823B_AB |
| 823B-G-IBP-S-1160 |  | GL 1-5 (166m³) | 20d | 2012-11-17 A | 2013-01-14 A | 823B-G-IBP-S-1130 | 100% | 2012-11-17 | 2012-12-10 | Concrete [166 Cu m] | 166 | 100% | 100% | 166 | m3 | 166 | 823B_AB |
| 823B-G-IBP-S-1170 |  | GL 6-10 (347m³) | 20d | 2012-11-19 A | 2013-01-17 A | 823B-G-IBP-S-1140 SS, 823B-G-IBP-S-1160 SS | 100% | 2012-11-19 | 2012-12-11 | Concrete [347 Cu m] | 347 | 100% | 100% | 347 | m3 | 347 | 823B_AB |
|  | 7 | **Concrete wall from +18.20 to R/F +22.90** |  | 2013-01-15 | 2013-02-02 |  |  |  |  |  |  |  |  |  |  |  |  |
| 823B-G-IBP-S-1190 |  | GL 1-5 (166m³) | 15d | 2013-01-15 A | 2013-01-26 A | 823B-G-IBP-S-1160 | 100% | 2012-12-11 | 2012-12-29 | Concrete [166 Cu m] | 166 | 100% | 100% | 166 | m3 | 166 | 823B_AB |
| 823B-G-IBP-S-1200 |  | GL 6-10 (347m³) | 15d | 2013-01-18 A | 2013-02-02 A | 823B-G-IBP-S-1170, 823B-G-IBP-S-1190 | 100% | 2012-12-31 | 2013-01-17 | Concrete [347 Cu m] | 347 | 100% | 100% | 347 | m3 | 347 | 823B_AB |
| 823B-G-IBP-S-1210 |  | GL 11-18 (189m³) | 18d | 2013-01-19 A | 2013-01-31 A | 823B-G-IBP-S-1180 | 100% | 2012-12-28 | 2013-01-18 | Concrete [189 Cu m] | 189 | 100% | 100% | 189 | m3 | 189 | 823B_AB |

| ID | WBS | Activity | Duration | Start | Finish | Predecessors | Complete | Planned start | Planned finish | Resources | user_text4 | user_text6 | user_text7 | user_integer1 | user_text1 | user_text5 | 823B_As-built |
| --- | --- | --- | --- | --- | --- | --- | --- | --- | --- | --- | --- | --- | --- | --- | --- | --- | --- |
|  | 8 | **R/F slab at +22.90** |  | 2012-10-08 | 2013-01-26 |  |  |  |  |  |  |  |  |  |  |  |  |
| 823B-G-IBP-S-1230 |  | GL 6-10 (376m³) | 18d | 2012-10-08 A | 2013-01-23 A | 823B-G-IBP-S-1200, 823B-G-IBP-S-1220 | 100% | 2013-01-24 | 2013-02-16 | Concrete [376 Cu m] | 376 | 100% | 100% | 376 | m3 | 376 | 823B_AB |
| 823B-G-IBP-S-1220 |  | GL 1-5 (373m³) | 20d | 2012-12-03 A | 2013-01-19 A | 823B-G-IBP-S-1190 | 100% | 2012-12-31 | 2013-01-23 | Concrete [373 Cu m] | 373 | 100% | 100% | 373 | m3 | 373 | 823B_AB |
| 823B-G-IBP-S-1240 |  | GL 11-18 (522m³) | 28d | 2012-12-03 A | 2013-01-26 A | 823B-G-IBP-S-1210 | 100% | 2013-01-19 | 2013-02-23 | Concrete [522 Cu m] | 522 | 100% | 100% | 522 | m3 | 522 | 823B_AB |
|  | 2 | **ABWF Works** |  | 2012-12-21 | 2015-09-05 |  |  |  |  |  |  |  |  |  |  |  |  |
|  | 1 | **Blockwall** |  | 2012-12-31 | 2013-02-04 |  |  |  |  |  |  |  |  |  |  |  |  |
| 823B-G-IBP-A-2010 |  | Blockwall 1-6 | 12d | 2012-12-31 A | 2013-01-11 A | 823B-G-IBP-S-1220 | 100% | 2013-01-24 | 2013-02-06 |  |  | 100% | 100% |  |  |  | 823B_AB |
| 823B-G-IBP-A-2020 |  | Blockwall 6-10 | 12d | 2013-01-12 A | 2013-01-23 A | 823B-G-IBP-A-2010 SS+5d | 100% | 2013-01-30 | 2013-02-15 |  |  | 100% | 100% |  |  |  | 823B_AB |
| 823B-G-IBP-A-2030 |  | Blockwall 10-18 | 12d | 2013-01-24 A | 2013-02-04 A | 823B-G-IBP-S-1240 SS+14d | 100% | 2013-02-05 | 2013-02-21 |  |  | 100% | 100% |  |  |  | 823B_AB |
|  | 2 | **Wet Trade (Screeding, Plastering and Rendering)** |  | 2013-02-01 | 2013-02-23 |  |  |  |  |  |  |  |  |  |  |  |  |
| 823B-G-IBP-A-2050 |  | Wet trade 6-10 | 12d | 2013-02-01 A | 2013-02-18 A | 823B-G-IBP-A-2020 SS+2d | 100% |  |  |  |  | 100% | 100% |  |  |  | 823B_AB |
| 823B-G-IBP-A-2040 |  | Wet trade 1-6 | 7d | 2013-02-07 A | 2013-02-18 A | 823B-G-IBP-A-2010 | 100% |  |  |  |  | 100% | 100% |  |  |  | 823B_AB |
| 823B-G-IBP-A-2060 |  | Wet trade 10-18 | 12d | 2013-02-07 A | 2013-02-23 A | 823B-G-IBP-A-2030 SS+2d | 100% |  |  |  |  | 100% | 100% |  |  |  | 823B_AB |
|  | 3 | **Metal Work** |  | 2013-02-07 | 2013-02-18 |  |  |  |  |  |  |  |  |  |  |  |  |
| 823B-G-IBP-A-2070 |  | Metal work 6-10 | 7d | 2013-02-07 A | 2013-02-18 A | 823B-G-IBP-S-1220, 823B-G-IBP-S-1230 SS+12d | 100% |  |  |  |  | 100% | 100% |  |  |  | 823B_AB |
|  | 4 | **Floor and Wall Tile** |  | 2013-02-19 | 2013-03-12 |  |  |  |  |  |  |  |  |  |  |  |  |
| 823B-G-IBP-A-2080 |  | Floor and wall tile 1-6 | 5d | 2013-02-19 A | 2013-02-23 A | 823B-G-IBP-A-2040 | 100% |  |  |  |  | 100% | 100% |  |  |  | 823B_AB |
| 823B-G-IBP-A-2090 |  | Floor and wall tile 6-10 | 10d | 2013-02-25 A | 2013-03-07 A | 823B-G-IBP-A-2020, 823B-G-IBP-A-2050, 823B-G-IBP-A-2080 | 100% |  |  |  |  | 100% | 100% |  |  |  | 823B_AB |
| 823B-G-IBP-A-2100 |  | Floor and wall tile 10-18 | 4d | 2013-03-08 A | 2013-03-12 A | 823B-G-IBP-A-2030, 823B-G-IBP-A-2060, 823B-G-IBP-A-2090 | 100% |  |  |  |  | 100% | 100% |  |  |  | 823B_AB |
|  | 5 | **Ceiling, Floor and Wall Coating** |  | 2013-03-13 | 2013-06-21 |  |  |  |  |  |  |  |  |  |  |  |  |
| 823B-G-IBP-A-2110 |  | Ceiling, floor and wall coating 1-6 | 7d | 2013-03-13 A | 2013-06-04 A | 823B-G-IBP-A-2010, 823B-G-IBP-A-2100 | 100% | 2013-03-13 | 2013-03-20 |  |  | 100% | 100% |  |  |  | 823B_AB |
| 823B-G-IBP-A-2120 |  | Ceiling, floor and wall coating 6-10 | 7d | 2013-06-05 A | 2013-06-13 A | 823B-G-IBP-A-2020, 823B-G-IBP-A-2110 | 100% | 2013-03-21 | 2013-03-28 |  |  | 100% | 100% |  |  |  | 823B_AB |
| 823B-G-IBP-A-2130 |  | Ceiling, floor and wall coating 10-18 | 7d | 2013-06-14 A | 2013-06-21 A | 823B-G-IBP-A-2030, 823B-G-IBP-A-2120 | 100% | 2013-04-02 | 2013-04-10 |  |  | 100% | 100% |  |  |  | 823B_AB |
|  | 6 | **Ceiling Grid** |  | 2013-06-22 | 2013-07-27 |  |  |  |  |  |  |  |  |  |  |  |  |
| 823B-G-IBP-A-2140 |  | Ceiling grid 1-6 | 10d | 2013-06-22 A | 2013-07-04 A | 823B-G-IBP-S-1220, 823B-G-IBP-S-1230, 823B-G-IBP-S-1240, 823B-G-IBP-A-2130 | 100% | 2013-04-11 | 2013-04-22 |  |  | 100% | 100% |  |  |  | 823B_AB |
| 823B-G-IBP-A-2150 |  | Ceiling grid 6-10 | 10d | 2013-07-05 A | 2013-07-16 A | 823B-G-IBP-A-2140 | 100% | 2013-04-23 | 2013-05-04 |  |  | 100% | 100% |  |  |  | 823B_AB |
| 823B-G-IBP-A-2160 |  | Ceiling grid 10-18 | 10d | 2013-07-17 A | 2013-07-27 A | 823B-G-IBP-A-2150 | 100% | 2013-05-06 | 2013-05-16 |  |  | 100% | 100% |  |  |  | 823B_AB |

| ID | WBS | Activity | Duration | Start | Finish | Predecessors | Complete | Planned start | Planned finish | user_text6 | user_text7 | 823B_As-built |
| --- | --- | --- | --- | --- | --- | --- | --- | --- | --- | --- | --- | --- |
|  | 7 | **Ceiling Panel** |  | 2013-07-05 | 2013-10-21 |  |  |  |  |  |  |  |
| 823B-G-IBP-A-2170 |  | Ceilign panel 1-6 | 30d | 2013-07-05 A | 2013-08-08 A | 823B-G-IBP-A-2140 FS+59d | 100% |  |  | 100% | 100% | 823B_AB |
| 823B-G-IBP-A-2180 |  | Ceilign panel 6-10 | 30d | 2013-08-09 A | 2013-09-12 A | 823B-G-IBP-A-2150, 823B-G-IBP-A-2170 | 100% |  |  | 100% | 100% | 823B_AB |
| 823B-G-IBP-A-2190 |  | Ceilign panel 10-18 | 30d | 2013-09-13 A | 2013-10-21 A | 823B-G-IBP-A-2160, 823B-G-IBP-A-2180 | 100% |  |  | 100% | 100% | 823B_AB |
|  | 8 | **Door Frame** |  | 2013-06-12 | 2013-06-29 |  |  |  |  |  |  |  |
| 823B-G-IBP-A-2200 |  | Door frame 1-6 | 9d | 2013-06-12 A | 2013-06-22 A | 823B-G-IBP-A-2010 FS+122d | 100% | 2013-07-12 | 2013-07-22 | 100% | 100% | 823B_AB |
| 823B-G-IBP-A-2210 |  | Door frame 6-10 | 9d | 2013-06-17 A | 2013-06-26 A | 823B-G-IBP-A-2020, 823B-G-IBP-A-2200 SS+2d | 100% | 2013-07-15 | 2013-07-24 | 100% | 100% | 823B_AB |
| 823B-G-IBP-A-2220 |  | Door frame 10-18 | 9d | 2013-06-20 A | 2013-06-29 A | 823B-G-IBP-A-2030, 823B-G-IBP-A-2210 SS+3d | 100% | 2013-07-18 | 2013-07-27 | 100% | 100% | 823B_AB |
|  | 9 | **Door and Ironmongery** |  | 2014-12-01 | 2014-12-24 |  |  |  |  |  |  |  |
| 823B-G-IBP-A-2230 |  | Door and ironmongery 1-6 | 7d | 2014-12-01 A | 2014-12-08 A | 823B-G-IBP-A-2200 FS+59d | 100% |  |  | 100% | 100% | 823B_AB |
| 823B-G-IBP-A-2240 |  | Door and ironmongery 6-10 | 7d | 2014-12-09 A | 2014-12-16 A | 823B-G-IBP-A-2210, 823B-G-IBP-A-2230 | 100% |  |  | 100% | 100% | 823B_AB |
| 823B-G-IBP-A-2250 |  | Door and ironmongery 10-18 | 7d | 2014-12-17 A | 2014-12-24 A | 823B-G-IBP-A-2220, 823B-G-IBP-A-2240 | 100% |  |  | 100% | 100% | 823B_AB |
|  | 10 | **Roof Waterproofing** |  | 2012-12-21 | 2013-02-08 |  |  |  |  |  |  |  |
| 823B-G-IBP-A-2260 |  | Roof waterproofing 1-18 | 14d | 2012-12-21 A | 2013-02-08 A | 823B-G-IBP-S-1220, 823B-G-IBP-S-1230 SS+5d, 823B-G-IBP-S-1240 SS | 100% | 2013-01-30 | 2013-02-18 | 100% | 100% | 823B_AB |
|  | 11 | **Skylight** |  | 2013-10-02 | 2013-10-16 |  |  |  |  |  |  |  |
| 823B-G-IBP-A-2270 |  | Skylight 1-6 | 4d | 2013-10-02 A | 2013-10-05 A | 823B-G-IBP-A-2260 FS+159d | 100% | 2013-09-02 | 2013-09-05 | 100% | 100% | 823B_AB |
| 823B-G-IBP-A-2280 |  | Skylight 6-10 | 4d | 2013-10-07 A | 2013-10-10 A | 823B-G-IBP-A-2270 | 100% | 2013-09-06 | 2013-09-10 | 100% | 100% | 823B_AB |
| 823B-G-IBP-A-2290 |  | Skylight 10-18 | 4d | 2013-10-11 A | 2013-10-16 A | 823B-G-IBP-A-2280 | 100% | 2013-09-11 | 2013-09-14 | 100% | 100% | 823B_AB |
|  | 12 | **Roof Railing** |  | 2013-10-07 | 2013-10-31 |  |  |  |  |  |  |  |
| 823B-G-IBP-A-2300 |  | Roof railing 1-6 | 12d | 2013-10-07 A | 2013-10-21 A | 823B-G-IBP-A-2270 | 100% | 2013-09-06 | 2013-09-19 | 100% | 100% | 823B_AB |
| 823B-G-IBP-A-2310 |  | Roof railing 6-10 | 12d | 2013-10-12 A | 2013-10-25 A | 823B-G-IBP-A-2280, 823B-G-IBP-A-2300 | 100% | 2013-09-21 | 2013-10-05 | 100% | 100% | 823B_AB |
| 823B-G-IBP-A-2320 |  | Roof railing 10-18 | 12d | 2013-10-18 A | 2013-10-31 A | 823B-G-IBP-A-2290, 823B-G-IBP-A-2310 | 100% | 2013-10-07 | 2013-10-21 | 100% | 100% | 823B_AB |
|  | 13 | **Louvre and Window Frame** |  | 2013-06-10 | 2013-06-27 |  |  |  |  |  |  |  |
| 823B-G-IBP-A-2330 |  | Louvre and window frame 1-6 | 5d | 2013-06-10 A | 2013-06-15 A | 823B-G-IBP-A-2010 FS+90d, 823B-PRO-1030 | 100% |  |  | 100% | 100% | 823B_AB |
| 823B-G-IBP-A-2340 |  | Louvre and window frame 6-10 | 5d | 2013-06-17 A | 2013-06-21 A | 823B-G-IBP-A-2020, 823B-G-IBP-A-2330, 823B-PRO-1030 | 100% |  |  | 100% | 100% | 823B_AB |
| 823B-G-IBP-A-2350 |  | Louvre and window frame 10-18 | 5d | 2013-06-22 A | 2013-06-27 A | 823B-G-IBP-A-2030, 823B-G-IBP-A-2340, 823B-PRO-1030 | 100% |  |  | 100% | 100% | 823B_AB |

| ID | WBS | Activity | Duration | Start | Finish | Predecessors | Complete | Planned start | Planned finish | user_text6 | user_text7 | 823B_As-built |
| --- | --- | --- | --- | --- | --- | --- | --- | --- | --- | --- | --- | --- |
|  | 14 | **Louver and Window Glass** |  | 2013-08-12 | 2013-10-16 |  |  |  |  |  |  |  |
| 823B-G-IBP-A-2360 |  | Louvre and window glass 1-6 | 12d | 2013-08-12 A | 2013-08-24 A | 823B-G-IBP-A-2010 FS+170d | 100% | 2013-09-06 | 2013-09-19 | 100% | 100% | 823B_AB |
| 823B-G-IBP-A-2370 |  | Louvre and window glass 6-10 | 12d | 2013-08-26 A | 2013-09-07 A | 823B-G-IBP-A-2020, 823B-G-IBP-A-2360 | 100% | 2013-09-21 | 2013-10-05 | 100% | 100% | 823B_AB |
| 823B-G-IBP-A-2380 |  | Louvre and window glass 10-18 | 12d | 2013-09-09 A | 2013-10-16 A | 823B-G-IBP-A-2030, 823B-G-IBP-A-2370 | 100% | 2013-10-07 | 2013-10-21 | 100% | 100% | 823B_AB |
|  | 15 | **Metal Canopy** |  | 2013-04-02 | 2013-04-30 |  |  |  |  |  |  |  |
| 823B-G-IBP-A-2390 |  | Metal canopy 1-6 | 3d | 2013-04-02 A | 2013-04-11 A | 823B-G-IBP-S-1220, 823B-G-IBP-A-2370 | 100% | 2013-10-07 | 2013-10-09 | 100% | 100% | 823B_AB |
| 823B-G-IBP-A-2400 |  | Metal canopy 6-10 | 3d | 2013-04-12 A | 2013-04-20 A | 823B-G-IBP-S-1230, 823B-G-IBP-A-2390 | 100% | 2013-10-10 | 2013-10-12 | 100% | 100% | 823B_AB |
| 823B-G-IBP-A-2410 |  | Metal canopy 10-18 | 3d | 2013-04-22 A | 2013-04-30 A | 823B-G-IBP-S-1240, 823B-G-IBP-A-2400 | 100% | 2013-10-15 | 2013-10-17 | 100% | 100% | 823B_AB |
|  | 16 | **Mineral Silicate Paint** |  | 2014-09-01 | 2014-12-13 |  |  |  |  |  |  |  |
| 823B-G-IBP-A-2420 |  | Mineral silicate paint 1-6 | 7d | 2014-09-01 A | 2014-12-04 A | 823B-G-IBP-S-1220, 823B-G-IBP-A-2360 SS+8d | 100% | 2014-09-01 | 2014-09-08 | 100% | 100% | 823B_AB |
| 823B-G-IBP-A-2430 |  | Mineral silicate paint 6-10 | 7d | 2014-09-10 A | 2014-12-09 A | 823B-G-IBP-S-1230, 823B-G-IBP-A-2420 | 100% | 2014-09-10 | 2014-09-17 | 100% | 100% | 823B_AB |
| 823B-G-IBP-A-2440 |  | Mineral silicate paint 10-18 | 7d | 2014-09-18 A | 2014-12-13 A | 823B-G-IBP-S-1240, 823B-G-IBP-A-2430 | 100% | 2014-09-18 | 2014-09-25 | 100% | 100% | 823B_AB |
|  | 17 | **Architectural Fins** |  | 2014-09-10 | 2014-12-18 |  |  |  |  |  |  |  |
| 823B-G-IBP-A-2450 |  | Architectural fins 1-6 | 7d | 2014-09-10 A | 2014-12-09 A | 823B-G-IBP-A-2420 | 100% | 2014-09-10 | 2014-09-17 | 100% | 100% | 823B_AB |
| 823B-G-IBP-A-2460 |  | Architectural fins 6-10 | 7d | 2014-09-18 A | 2014-12-13 A | 823B-G-IBP-A-2430, 823B-G-IBP-A-2450 | 100% | 2014-09-18 | 2014-09-25 | 100% | 100% | 823B_AB |
| 823B-G-IBP-A-2470 |  | Architectural fins 10-16 | 7d | 2014-09-26 A | 2014-12-18 A | 823B-G-IBP-A-2440, 823B-G-IBP-A-2460 | 100% | 2014-09-26 | 2014-10-06 | 100% | 100% | 823B_AB |
|  | 18 | **Final Fix and Green Roof** |  | 2015-04-01 | 2015-09-05 |  |  |  |  |  |  |  |
| 823B-G-IBP-A-2480 |  | Final fix and green roof 1-6 | 14d | 2015-04-01 A | 2015-09-05 A | 823B-G-IBP-S-1220, 823B-G-IBP-A-2360 SS | 100% | 2015-04-01 | 2015-04-21 | 100% | 100% | 823B_AB |
| 823B-G-IBP-A-2490 |  | Final fix and green roof 6-10 | 14d | 2015-04-17 A | 2015-09-05 A | 823B-G-IBP-S-1230, 823B-G-IBP-A-2480 SS+10d | 100% | 2015-04-17 | 2015-05-04 | 100% | 100% | 823B_AB |
| 823B-G-IBP-A-2500 |  | Final fix and green roof 10-16 | 14d | 2015-04-29 A | 2015-09-05 A | 823B-G-IBP-S-1240, 823B-G-IBP-A-2490 SS+10d | 100% | 2015-04-29 | 2015-05-15 | 100% | 100% | 823B_AB |
|  | 3 | **Builder's Work in Connection with Services** |  | 2012-12-03 | 2013-02-20 |  |  |  |  |  |  |  |
| 823B-G-IBP-B-1000 |  | Pipe laying (stormwater system) | 22d | 2012-12-03 A | 2012-12-29 A | 823B-G-IBP-S-1220 SS | 100% | 2012-12-31 | 2013-01-25 | 100% | 100% | 823B_AB |
| 823B-G-IBP-B-2000 |  | Pipe laying (foulwater system) | 22d | 2012-12-31 A | 2013-01-25 A | 823B-G-IBP-B-1000 | 100% | 2013-01-26 | 2013-02-23 | 100% | 100% | 823B_AB |
| 823B-G-IBP-B-3000 |  | Earthing (main earthing & lighting protection system) | 24d | 2013-01-21 A | 2013-02-20 A | 823B-G-IBP-S-1220, 823B-G-IBP-S-1230 SS | 100% | 2013-01-24 | 2013-02-23 | 100% | 100% | 823B_AB |

| ID | WBS | Activity | Duration | Start | Finish | Predecessors | Complete | Planned start | Planned finish | Resources | user_text4 | user_text6 | user_text7 | user_integer1 | user_text1 | user_text5 | 823B_As-built |
| --- | --- | --- | --- | --- | --- | --- | --- | --- | --- | --- | --- | --- | --- | --- | --- | --- | --- |
|  | H | **OTHER BUILDINGS & STRUCTURES** |  | 2012-07-19 | 2015-04-25 |  |  |  |  |  |  |  |  |  |  |  |  |
|  | 1 | **S&C Assembly Storage, Rail Stillage and FBW Steel Portal** |  | 2013-01-14 | 2015-03-31 |  |  |  |  |  |  |  |  |  |  |  |  |
|  | 1 | **Site Formation / Earthworks** |  | 2013-01-14 | 2013-08-31 |  |  |  |  |  |  |  |  |  |  |  |  |
| 823B-H-RSP-1010 |  | Excavation to foundation level (S&C Storage Assembly) (429m³) | 6d | 2013-01-14 A | 2013-01-19 A | 823B-ERS-A4-DW-1010 | 100% | 2012-12-01 | 2012-12-07 | Excavation [429 Cu m]; Operator [2 NO]; Labour [1 NO]; Other - Plant & Equipment [2 NO]; Labour [48 h]; Operator [96 h]; Other - Plant & Equipment [96 h] | 429 | 100% | 100% | 429 | m3 | 429 | 823B_AB |
| 823B-H-RSP-1020 |  | Excavation to foundation level (Short Rail Stillage) (327m³) | 6d | 2013-01-21 A | 2013-01-26 A | 823B-H-RSP-1010, 823B-H-RSP-1070 | 100% | 2013-01-30 | 2013-02-05 | Excavation [327 Cu m]; Labour [1 NO]; Operator [2 NO]; Other - Plant & Equipment [2 NO]; Labour [48 h]; Operator [96 h]; Other - Plant & Equipment [96 h] | 327 | 100% | 100% | 327 | m3 | 327 | 823B_AB |
| 823B-H-RSP-1030 |  | Excavation to foundation level (FBW Rail Stillage) (243m³) | 6d | 2013-01-28 A | 2013-02-02 A | 823B-H-RSP-1020 | 100% | 2013-02-06 | 2013-02-15 | Excavation [243 Cu m]; Operator [96 h]; Labour [48 h]; Other - Plant & Equipment [2 NO]; Operator [2 NO]; Labour [1 NO]; Other - Plant & Equipment [96 h] | 243 | 100% | 100% | 243 | m3 | 243 | 823B_AB |
| 823B-H-RSP-1040 |  | Excavation to foundation level (Long Rail Stillage) (1,140m³) | 12d | 2013-02-04 A | 2013-02-16 A | 823B-H-RSP-1030 SS | 100% | 2013-02-06 | 2013-02-22 | Excavation [1140 Cu m]; Labour [1 NO]; Operator [2 NO]; Other - Plant & Equipment [2 NO]; Labour [96 h]; Operator [192 h]; Other - Plant & Equipment [192 h] | 1140 | 100% | 100% | 1140 | m3 | 1140 | 823B_AB |
| 823B-H-RSP-1050 |  | Sub-ballast / track bed for Rail Stillage & FBW Steel Portal, S&C Assembly Storage and Loco Shed | 36d | 2013-07-22 A | 2013-08-31 A | 823B-H-RSP-1110 | 100% | 2013-04-06 | 2013-05-20 | Operator [432 h]; Labour [3456 h]; Other - Plant & Equipment [1 NO]; Operator [1 NO]; Labour [8 NO]; Other - Plant & Equipment [432 h] |  | 100% | 100% |  |  |  | 823B_AB |
|  | 2 | **Civil and Structure** |  | 2013-01-21 | 2014-09-20 |  |  |  |  |  |  |  |  |  |  |  |  |
| 823B-H-RSP-1060 |  | Strip footing (S&C storage assembly) (198m³ conc) | 24d | 2013-01-21 A | 2013-09-05 A | 823B-H-RSP-1010 | 100% | 2012-12-08 | 2013-01-08 | Concrete [198 Cu m]; Concrete (Buildings & External) [198 Cu m]; Rebar [34 t]; Labour [14 NO]; Operator [1 NO]; Other - Plant & Equipment [1 NO]; Labour [2688 h]; Operator [192 h]; Other - Plant & Equipment [192 h] | 198 | 100% | 100% | 198 | m3 | 198 | 823B_AB |
| 823B-H-RSP-1080 |  | Footing (Short Rail Stillage) (45m³ conc) | 14d | 2013-01-28 A | 2013-08-31 A | 823B-H-RSP-1020 | 100% | 2013-02-06 | 2013-02-25 | Operator [112 h]; Labour [1568 h]; Operator [1 NO]; Labour [14 NO]; Other - Plant & Equipment [1 NO]; Rebar [7 t]; Concrete [45 Cu m]; Concrete (Buildings & External) [45 Cu m]; Other - Plant & Equipment [112 h] | 45 | 100% | 100% | 45 | m3 | 45 | 823B_AB |
| 823B-H-RSP-1130 |  | Strip footing (FBW Rail Stillage) (39m³ conc) | 12d | 2013-02-04 A | 2013-06-01 A | 823B-H-RSP-1030 | 100% | 2013-02-16 | 2013-03-01 | Concrete [39 Cu m]; Concrete (Buildings & External) [39 Cu m]; Rebar [6 t]; Operator [1 NO]; Other - Plant & Equipment [1 NO]; Operator [96 h]; Labour [1344 h]; Labour [14 NO]; Other - Plant & Equipment [96 h] | 39 | 100% | 100% | 39 | m3 | 39 | 823B_AB |
| 823B-H-RSP-1170 |  | Strip footing & footings (Long Rail Stillage) (183m³ conc) | 24d | 2013-02-18 A | 2013-06-01 A | 823B-H-RSP-1130, 823B-H-RSP-1040 | 100% | 2013-03-02 | 2013-04-02 | Rebar [25 t]; Concrete [183 Cu m]; Concrete (Buildings & External) [183 Cu m]; Operator [1 NO]; Other - Plant & Equipment [1 NO]; Operator [192 h]; Labour [14 NO]; Labour [2688 h]; Other - Plant & Equipment [192 h] | 183 | 100% | 100% | 183 | m3 | 183 | 823B_AB |
| 823B-H-RSP-1140 |  | Column/wall (44m³ conc) | 18d | 2013-02-21 A | 2013-06-20 A | 823B-H-RSP-1130 | 100% | 2013-03-02 | 2013-03-22 | Concrete [44 Cu m]; Concrete (Buildings & External) [44 Cu m]; Rebar [7 t]; Other - Plant & Equipment [1 NO]; Operator [1 NO]; Labour [14 NO]; Labour [2016 h]; Operator [144 h]; Other - Plant & Equipment [144 h] | 44 | 100% | 100% | 44 | m3 | 44 | 823B_AB |
| 823B-H-RSP-1090 |  | Plinths (7m³ conc) | 10d | 2013-02-25 A | 2013-09-02 A | 823B-H-RSP-1080 | 100% | 2013-02-26 | 2013-03-08 | Concrete [7 Cu m]; Concrete (Buildings & External) [7 Cu m]; Rebar [2 t]; Operator [1 NO]; Other - Plant & Equipment [1 NO]; Labour [14 NO]; Labour [1120 h]; Operator [80 h]; Other - Plant & Equipment [80 h] | 7 | 100% | 100% | 7 | m3 | 7 | 823B_AB |
| 823B-H-RSP-1180 |  | Column/wall & plinths (185m³ conc) | 42d | 2013-02-25 A | 2013-06-22 A | 823B-H-RSP-1170 SS+12d | 100% | 2013-03-16 | 2013-05-09 | Concrete [185 Cu m]; Concrete (Buildings & External) [185 Cu m]; Rebar [30 t]; Operator [1 NO]; Other - Plant & Equipment [1 NO]; Operator [336 h]; Labour [4704 h]; Labour [14 NO]; Other - Plant & Equipment [336 h] | 185 | 100% | 100% | 185 | m3 | 185 | 823B_AB |
| 823B-H-RSP-1190 |  | Slab (237m³ conc) | 32d | 2013-07-08 A | 2013-08-31 A | 823B-H-RSP-1180 SS+23d | 100% | 2013-04-17 | 2013-05-25 | Labour [14 NO]; Operator [1 NO]; Other - Plant & Equipment [1 NO]; Operator [256 h]; Labour [3584 h]; Rebar [37 t]; Concrete [237 Cu m]; Concrete (Buildings & External) [237 Cu m]; Other - Plant & Equipment [256 h] | 237 | 100% | 100% | 237 | m3 | 237 | 823B_AB |
| 823B-H-RSP-1150 |  | Slabs (152m³ conc) | 24d | 2013-08-01 A | 2013-08-31 A | 823B-H-RSP-1140 | 100% | 2013-03-23 | 2013-04-24 | Concrete (Buildings & External) [152 Cu m]; Concrete [152 Cu m]; Rebar [22 t]; Labour [14 NO]; Operator [1 NO]; Other - Plant & Equipment [1 NO]; Labour [2688 h]; Operator [192 h]; Other - Plant & Equipment [192 h] | 152 | 100% | 100% | 152 | m3 | 152 | 823B_AB |
| 823B-H-RSP-1070 |  | On-grade slab (254m³ conc) | 18d | 2013-09-06 A | 2013-09-26 A | 823B-H-RSP-1060 | 100% | 2013-01-09 | 2013-01-29 | Concrete [254 Cu m]; Concrete (Buildings & External) [254 Cu m]; Rebar [34 t]; Labour [2016 h]; Operator [144 h]; Other - Plant & Equipment [1 NO]; Operator [1 NO]; Labour [14 NO]; Other - Plant & Equipment [144 h] | 254 | 100% | 100% | 254 | m3 | 254 | 823B_AB |
| 823B-H-RSP-1100 |  | On-grade slab (136m³ conc) | 24d | 2013-09-06 A | 2013-09-24 A | 823B-H-RSP-1090 SS | 100% | 2013-02-26 | 2013-03-25 | Concrete [136 Cu m]; Concrete (Buildings & External) [136 Cu m]; Rebar [18 t]; Operator [1 NO]; Other - Plant & Equipment [1 NO]; Operator [192 h]; Labour [2688 h]; Labour [14 NO]; Other - Plant & Equipment [192 h] | 136 | 100% | 100% | 136 | m3 | 136 | 823B_AB |
| 823B-H-RSP-1110 |  | Dwarft walls (8m³ conc) | 6d | 2013-09-23 A | 2013-09-28 A | 823B-H-RSP-1100 | 100% | 2013-03-26 | 2013-04-05 | Concrete [8 Cu m]; Concrete (Buildings & External) [8 Cu m]; Labour [10 NO]; Labour [480 h] | 8 | 100% | 100% | 8 | m3 | 8 | 823B_AB |
| 823B-H-RSP-1120 |  | Steel columns & beams | 28d | 2014-08-04 A | 2014-09-06 A | 823B-H-RSP-1190 | 100% | 2014-08-01 | 2014-09-02 | Labour [12 NO]; Labour [2688 h]; Operator [1 NO]; Other - Plant & Equipment [1 NO]; Operator [224 h]; Other - Plant & Equipment [224 h] |  | 100% | 100% |  |  |  | 823B_AB |
| 823B-H-RSP-1160 |  | Steel columns & beams | 30d | 2014-08-04 A | 2014-09-15 A | 823B-H-RSP-1150, 823B-H-RSP-1120 | 100% | 2014-09-03 | 2014-10-10 | Operator [1 NO]; Other - Plant & Equipment [1 NO]; Operator [240 h]; Labour [11 NO]; Labour [2640 h]; Other - Plant & Equipment [240 h] |  | 100% | 100% |  |  |  | 823B_AB |
| 823B-H-RSP-1200 |  | Steel columns & beams | 24d | 2014-08-04 A | 2014-09-20 A | 823B-H-RSP-1190, 823B-H-RSP-1160 | 100% | 2014-10-11 | 2014-11-07 | Labour [11 NO]; Operator [1 NO]; Other - Plant & Equipment [1 NO]; Labour [2112 h]; Operator [192 h]; Other - Plant & Equipment [192 h] |  | 100% | 100% |  |  |  | 823B_AB |

| ID | WBS | Activity | Duration | Start | Finish | Predecessors | Complete | Planned start | Planned finish | Resources | user_text6 | user_text7 | 823B_As-built |
| --- | --- | --- | --- | --- | --- | --- | --- | --- | --- | --- | --- | --- | --- |
|  | 3 | **ABWF Works** |  | 2015-03-02 | 2015-03-31 |  |  |  |  |  |  |  |  |
| 823B-H-RSP-2010 |  | Corrugated Metal Roof | 79d | 2015-03-02 A | 2015-03-31 A | 823B-H-RSP-1200, 823B-H-RSP-1160, 823B-PRO-1050 | 100% | 2015-03-02 | 2015-06-08 | Labour [5 NO]; Operator [1 NO]; Other - Plant & Equipment [1 NO]; Labour [3160 h]; Operator [632 h]; Other - Plant & Equipment [632 h] | 100% | 100% | 823B_AB |
|  | 2 | **Feeder Station (SHK)** |  | 2012-07-19 | 2013-06-08 |  |  |  |  |  |  |  |  |
|  | 1 | **Zone 1 (GL1-2/A-E)** |  | 2012-07-19 | 2012-10-31 |  |  |  |  |  |  |  |  |
| 823B-H-SHK-Z1-1010 |  | Footing Excavation & Blinding layer | 1d | 2012-07-19 A | 2012-07-19 A | 823B-ERS-A2-DW-1010 SS | 100% |  |  | Excavation [8 Cu m] | 100% | 100% | 823B_AB |
| 823B-H-SHK-Z1-1020 |  | Erecting Footing Formwork | 3d | 2012-07-20 A | 2012-07-23 A | 823B-H-SHK-Z1-1010 | 100% |  |  |  | 100% | 100% | 823B_AB |
| 823B-H-SHK-Z1-1030 |  | Steel Fixing Footing | 4d | 2012-07-24 A | 2012-07-27 A | 823B-H-SHK-Z1-1020 | 100% |  |  |  | 100% | 100% | 823B_AB |
| 823B-H-SHK-Z1-1040 |  | Concrete Footing | 1d | 2012-07-28 A | 2012-07-28 A | 823B-H-SHK-Z1-1030 | 100% |  |  | Concrete [8 Cu m] | 100% | 100% | 823B_AB |
| 823B-H-SHK-Z1-1050 |  | Dismantle formwork and Erecting Working Platform | 1d | 2012-07-30 A | 2012-07-30 A | 823B-H-SHK-Z1-1040 | 100% |  |  |  | 100% | 100% | 823B_AB |
| 823B-H-SHK-Z1-1060 |  | Steel Fixing column to ground beam level | 2d | 2012-07-31 A | 2012-08-01 A | 823B-H-SHK-Z1-1050 | 100% |  |  |  | 100% | 100% | 823B_AB |
| 823B-H-SHK-Z1-1090 |  | Steel Fixing Full Heigh column | 5d | 2012-07-31 A | 2012-08-04 A | 823B-H-SHK-Z1-1050 | 100% |  |  |  | 100% | 100% | 823B_AB |
| 823B-H-SHK-Z1-1070 |  | Erecting column formwork to ground beam level | 2d | 2012-08-02 A | 2012-08-03 A | 823B-H-SHK-Z1-1060 | 100% |  |  |  | 100% | 100% | 823B_AB |
| 823B-H-SHK-Z1-1100 |  | Erecting Full Heigh Column Formwork | 5d | 2012-08-03 A | 2012-08-08 A | 823B-H-SHK-Z1-1090 SS+3d | 100% |  |  |  | 100% | 100% | 823B_AB |
| 823B-H-SHK-Z1-1080 |  | Concrete column to ground beam level | 0.25d | 2012-08-04 A | 2012-08-04 A | 823B-H-SHK-Z1-1070 | 100% |  |  | Concrete [2 Cu m] | 100% | 100% | 823B_AB |
| 823B-H-SHK-Z1-1120 |  | Dismantle column Formwork | 1d | 2012-08-06 A | 2012-08-06 A | 823B-H-SHK-Z1-1080 | 100% |  |  |  | 100% | 100% | 823B_AB |
| 823B-H-SHK-Z1-1130 |  | Backfill | 4d | 2012-08-07 A | 2012-08-10 A | 823B-H-SHK-Z1-1120 | 100% |  |  |  | 100% | 100% | 823B_AB |
| 823B-H-SHK-Z1-1110 |  | Concete Full Heigh Column | 1d | 2012-08-09 A | 2012-08-09 A | 823B-H-SHK-Z1-1100 | 100% |  |  | Concrete [8 Cu m] | 100% | 100% | 823B_AB |
| 823B-H-SHK-Z1-1140 |  | Steel Fixing Ground Beam | 3d | 2012-08-11 A | 2012-08-14 A | 823B-H-SHK-Z1-1130 | 100% |  |  |  | 100% | 100% | 823B_AB |
| 823B-H-SHK-Z1-1150 |  | Concrete Ground Beam | 1d | 2012-08-15 A | 2012-08-15 A | 823B-H-SHK-Z1-1140 | 100% |  |  |  | 100% | 100% | 823B_AB |
| 823B-H-SHK-Z1-1160 |  | Dismantle Ground Beam Formwork, Backfill and blinding Blinding layer for ground floor slab | 4d | 2012-08-16 A | 2012-08-20 A | 823B-H-SHK-Z1-1150 | 100% |  |  |  | 100% | 100% | 823B_AB |
| 823B-H-SHK-Z1-1170 |  | Erecting Cable Trench Wall Formwork | 3d | 2012-08-21 A | 2012-08-23 A | 823B-H-SHK-Z1-1160 | 100% |  |  |  | 100% | 100% | 823B_AB |
| 823B-H-SHK-Z1-1210 |  | Steel Fixing Ground Floor Slab and erecting formwork (GL1-2/B1-D1) | 4d | 2012-08-21 A | 2012-08-24 A | 823B-H-SHK-Z1-1160 | 100% |  |  |  | 100% | 100% | 823B_AB |
| 823B-H-SHK-Z1-1180 |  | Steel Fixing Cable Trench Wall | 3d | 2012-08-22 A | 2012-08-24 A | 823B-H-SHK-Z1-1170 SS+1d | 100% |  |  |  | 100% | 100% | 823B_AB |
| 823B-H-SHK-Z1-1190 |  | Closing Cable Trench WallFormwork | 3d | 2012-08-23 A | 2012-08-25 A | 823B-H-SHK-Z1-1180 SS+1d | 100% |  |  |  | 100% | 100% | 823B_AB |
| 823B-H-SHK-Z1-1220 |  | Concrete Ground Floor Slab (GL1-2/B1-D1) & 200mm On Grade Slab (GL1-2/A-B1) | 1d | 2012-08-25 A | 2012-08-25 A | 823B-H-SHK-Z1-1210 | 100% |  |  |  | 100% | 100% | 823B_AB |
| 823B-H-SHK-Z1-1200 |  | Concrete Cable Trench Wall | 1d | 2012-08-27 A | 2012-08-27 A | 823B-H-SHK-Z1-1190 | 100% |  |  |  | 100% | 100% | 823B_AB |
| 823B-H-SHK-Z1-1250 |  | Erecting Wall Formwork [G/F - R/F) | 7d | 2012-08-27 A | 2012-09-03 A | 823B-H-SHK-Z1-1220 | 100% |  |  |  | 100% | 100% | 823B_AB |
| 823B-H-SHK-Z1-1230 |  | Dismanlte Cable Trench wall formwork and backfill soil | 2d | 2012-08-28 A | 2012-08-29 A | 823B-H-SHK-Z1-1200 | 100% |  |  |  | 100% | 100% | 823B_AB |
| 823B-H-SHK-Z1-1260 |  | Steel Fixing Wall | 7d | 2012-08-29 A | 2012-09-05 A | 823B-H-SHK-Z1-1250 SS+2d | 100% |  |  |  | 100% | 100% | 823B_AB |
| 823B-H-SHK-Z1-1240 |  | Concrete 200mm On Grade Slab (GL1-2/D1-E) | 1d | 2012-08-30 A | 2012-08-30 A | 823B-H-SHK-Z1-1230 | 100% |  |  | Concrete [8 Cu m] | 100% | 100% | 823B_AB |
| 823B-H-SHK-Z1-1270 |  | Closing Wall Formwork | 7d | 2012-08-31 A | 2012-09-07 A | 823B-H-SHK-Z1-1260 SS+2d | 100% |  |  |  | 100% | 100% | 823B_AB |
| 823B-H-SHK-Z1-1280 |  | Concrete wall | 1d | 2012-09-08 A | 2012-09-08 A | 823B-H-SHK-Z1-1270 | 100% |  |  | Concrete [8 Cu m] | 100% | 100% | 823B_AB |
| 823B-H-SHK-Z1-1290 |  | Erecting beam, roof slab formwork | 10d | 2012-09-10 A | 2012-09-20 A | 823B-H-SHK-Z1-1280 | 100% |  |  |  | 100% | 100% | 823B_AB |
| 823B-H-SHK-Z1-1300 |  | Steel Fixing beam and roof slab | 7d | 2012-09-19 A | 2012-09-26 A | 823B-H-SHK-Z1-1290 SS+8d | 100% |  |  |  | 100% | 100% | 823B_AB |
| 823B-H-SHK-Z1-1310 |  | Concrete beam and roof slab | 1d | 2012-09-27 A | 2012-09-27 A | 823B-H-SHK-Z1-1300 | 100% |  |  | Concrete [8 Cu m] | 100% | 100% | 823B_AB |
| 823B-H-SHK-Z1-1320 |  | Water tank base slab, wall and roof | 25d | 2012-09-28 A | 2012-10-30 A | 823B-H-SHK-Z1-1310 | 100% |  |  |  | 100% | 100% | 823B_AB |
| 823B-H-SHK-Z1-1340 |  | Erecting parpet wall formwork | 2d | 2012-09-28 A | 2012-09-29 A | 823B-H-SHK-Z1-1310 | 100% |  |  |  | 100% | 100% | 823B_AB |
| 823B-H-SHK-Z1-1350 |  | Steel fixing parpet wall | 2d | 2012-10-03 A | 2012-10-04 A | 823B-H-SHK-Z1-1340 | 100% |  |  |  | 100% | 100% | 823B_AB |
| 823B-H-SHK-Z1-1360 |  | Closing parpet wall formwork | 2d | 2012-10-05 A | 2012-10-06 A | 823B-H-SHK-Z1-1350 | 100% |  |  |  | 100% | 100% | 823B_AB |
| 823B-H-SHK-Z1-1370 |  | Concrete parpet wall | 0.62d | 2012-10-08 A | 2012-10-08 A | 823B-H-SHK-Z1-1360 | 100% |  |  | Concrete [5 Cu m] | 100% | 100% | 823B_AB |
| 823B-H-SHK-Z1-1330 |  | Concrete water tank | 1d | 2012-10-31 A | 2012-10-31 A | 823B-H-SHK-Z1-1320 | 100% |  |  | Concrete [8 Cu m] | 100% | 100% | 823B_AB |

| ID | WBS | Activity | Duration | Start | Finish | Predecessors | Complete | Resources | user_text6 | user_text7 | 823B_As-built |
| --- | --- | --- | --- | --- | --- | --- | --- | --- | --- | --- | --- |
|  | 2 | **Zone 2 (GL3-4/A-E)** |  | 2012-08-01 | 2012-11-10 |  |  |  |  |  |  |
| 823B-H-SHK-Z2-1010 |  | Excavation (GL5-6/A-E) | 1d | 2012-08-01 A | 2012-08-01 A | 823B-H-SHK-Z1-1050 FS+1d | 100% | Excavation [8 Cu m] | 100% | 100% | 823B_AB |
| 823B-H-SHK-Z2-1020 |  | Grill holes and install electrode | 3d | 2012-08-02 A | 2012-08-04 A | 823B-H-SHK-Z2-1010 | 100% |  | 100% | 100% | 823B_AB |
| 823B-H-SHK-Z2-1030 |  | Excavation Earth and Trench | 1d | 2012-08-06 A | 2012-08-06 A | 823B-H-SHK-Z2-1020 | 100% |  | 100% | 100% | 823B_AB |
| 823B-H-SHK-Z2-1040 |  | Install Earth Conductor | 1d | 2012-08-07 A | 2012-08-07 A | 823B-H-SHK-Z2-1030 | 100% |  | 100% | 100% | 823B_AB |
| 823B-H-SHK-Z2-1050 |  | Soil Backfill Trench | 1d | 2012-08-08 A | 2012-08-08 A | 823B-H-SHK-Z2-1040 | 100% |  | 100% | 100% | 823B_AB |
| 823B-H-SHK-Z2-1060 |  | Resistant Test | 1d | 2012-08-09 A | 2012-08-09 A | 823B-H-SHK-Z2-1050 | 100% |  | 100% | 100% | 823B_AB |
| 823B-H-SHK-Z2-1070 |  | Blinding Layer (GL3-6/A-E) | 2d | 2012-08-10 A | 2012-08-11 A | 823B-H-SHK-Z2-1060 | 100% |  | 100% | 100% | 823B_AB |
| 823B-H-SHK-Z2-1080 |  | Erecting Footing Formwork (GL3-5/A-E) | 3d | 2012-08-13 A | 2012-08-15 A | 823B-H-SHK-Z2-1070 | 100% |  | 100% | 100% | 823B_AB |
| 823B-H-SHK-Z2-1090 |  | Steel Fixing Footing | 4d | 2012-08-18 A | 2012-08-22 A | 823B-H-SHK-Z2-1080 SS+5d | 100% |  | 100% | 100% | 823B_AB |
| 823B-H-SHK-Z2-1100 |  | Concrete Footing | 1d | 2012-08-23 A | 2012-08-23 A | 823B-H-SHK-Z2-1090 | 100% | Concrete [8 Cu m] | 100% | 100% | 823B_AB |
| 823B-H-SHK-Z2-1110 |  | Dismantle Footing formwork | 1d | 2012-08-24 A | 2012-08-24 A | 823B-H-SHK-Z2-1100 | 100% |  | 100% | 100% | 823B_AB |
| 823B-H-SHK-Z2-1120 |  | Steel Fixing Full Heigh column | 6d | 2012-08-27 A | 2012-09-01 A | 823B-H-SHK-Z2-1110 SS+2d | 100% |  | 100% | 100% | 823B_AB |
| 823B-H-SHK-Z2-1130 |  | Erecting Full Heigh Column Formwork | 6d | 2012-08-31 A | 2012-09-06 A | 823B-H-SHK-Z2-1120 SS+4d | 100% |  | 100% | 100% | 823B_AB |
| 823B-H-SHK-Z2-1140 |  | Concrete Full Heigh Column | 1d | 2012-09-07 A | 2012-09-07 A | 823B-H-SHK-Z2-1130 | 100% | Concrete [8 Cu m] | 100% | 100% | 823B_AB |
| 823B-H-SHK-Z2-1150 |  | Dismantle column Formwork | 1d | 2012-09-08 A | 2012-09-08 A | 823B-H-SHK-Z2-1140 | 100% |  | 100% | 100% | 823B_AB |
| 823B-H-SHK-Z2-1160 |  | Erecting Cable Trench Wall Formwork | 6d | 2012-09-10 A | 2012-09-15 A | 823B-H-SHK-Z2-1150 | 100% |  | 100% | 100% | 823B_AB |
| 823B-H-SHK-Z2-1170 |  | Steel Fixing Cable Trench Wall | 6d | 2012-09-13 A | 2012-09-19 A | 823B-H-SHK-Z2-1160 SS+3d | 100% |  | 100% | 100% | 823B_AB |
| 823B-H-SHK-Z2-1180 |  | Closing Cable Trench WallFormwork | 6d | 2012-09-17 A | 2012-09-22 A | 823B-H-SHK-Z2-1170 SS+3d | 100% |  | 100% | 100% | 823B_AB |
| 823B-H-SHK-Z2-1190 |  | Concrete Cable Trench Wall | 2d | 2012-09-24 A | 2012-09-25 A | 823B-H-SHK-Z2-1180 | 100% |  | 100% | 100% | 823B_AB |
| 823B-H-SHK-Z2-1200 |  | Dismantle Cable Trench Formwork backfill | 2d | 2012-09-26 A | 2012-09-27 A | 823B-H-SHK-Z2-1190 | 100% |  | 100% | 100% | 823B_AB |
| 823B-H-SHK-Z2-1210 |  | Backfill | 2d | 2012-09-28 A | 2012-09-29 A | 823B-H-SHK-Z2-1200 | 100% |  | 100% | 100% | 823B_AB |
| 823B-H-SHK-Z2-1220 |  | Concrete 200mm On Grade Slab (GL3-6/A-E) | 2d | 2012-10-03 A | 2012-10-04 A | 823B-H-SHK-Z2-1210 | 100% | Concrete [16 Cu m] | 100% | 100% | 823B_AB |
| 823B-H-SHK-Z2-1230 |  | Erecitng Wall Formwork (G/F - R/F) | 6d | 2012-10-05 A | 2012-10-11 A | 823B-H-SHK-Z2-1220 | 100% |  | 100% | 100% | 823B_AB |
| 823B-H-SHK-Z2-1240 |  | Steel Fixing wall (G/F - R/F) | 6d | 2012-10-08 A | 2012-10-13 A | 823B-H-SHK-Z2-1230 SS+2d | 100% |  | 100% | 100% | 823B_AB |
| 823B-H-SHK-Z2-1250 |  | Closing Wall Formwork | 6d | 2012-10-10 A | 2012-10-16 A | 823B-H-SHK-Z2-1240 SS+2d | 100% |  | 100% | 100% | 823B_AB |
| 823B-H-SHK-Z2-1260 |  | Concrete wall (G/F - R/F) | 1d | 2012-10-17 A | 2012-10-17 A | 823B-H-SHK-Z2-1250 | 100% | Concrete [8 Cu m] | 100% | 100% | 823B_AB |
| 823B-H-SHK-Z2-1270 |  | Erecting beam, roof slab formwork | 5d | 2012-10-18 A | 2012-10-24 A | 823B-H-SHK-Z2-1260 SS+1d | 100% |  | 100% | 100% | 823B_AB |
| 823B-H-SHK-Z2-1280 |  | Steel Fixing beam and roof slab | 6d | 2012-10-25 A | 2012-10-31 A | 823B-H-SHK-Z2-1270 | 100% |  | 100% | 100% | 823B_AB |
| 823B-H-SHK-Z2-1290 |  | Concrete beam and roof slab | 1d | 2012-11-01 A | 2012-11-01 A | 823B-H-SHK-Z2-1280 | 100% | Concrete [8 Cu m] | 100% | 100% | 823B_AB |
| 823B-H-SHK-Z2-1300 |  | Erecting parpet wall formwork | 3d | 2012-11-02 A | 2012-11-05 A | 823B-H-SHK-Z2-1290 | 100% |  | 100% | 100% | 823B_AB |
| 823B-H-SHK-Z2-1310 |  | Steel fixing parpet wall | 3d | 2012-11-05 A | 2012-11-07 A | 823B-H-SHK-Z2-1300 SS+2d | 100% |  | 100% | 100% | 823B_AB |
| 823B-H-SHK-Z2-1320 |  | Closing parpet wall formwork | 2d | 2012-11-08 A | 2012-11-09 A | 823B-H-SHK-Z2-1310 | 100% |  | 100% | 100% | 823B_AB |
| 823B-H-SHK-Z2-1330 |  | Concrete parapet wall | 0.62d | 2012-11-10 A | 2012-11-10 A | 823B-H-SHK-Z2-1320 | 100% | Concrete [5 Cu m] | 100% | 100% | 823B_AB |

| ID | WBS | Activity | Duration | Start | Finish | Predecessors | Complete | Planned start | Planned finish | Resources | user_text6 | user_text7 | 823B_As-built | user_text4 | user_integer1 | user_text1 | user_text5 |
| --- | --- | --- | --- | --- | --- | --- | --- | --- | --- | --- | --- | --- | --- | --- | --- | --- | --- |
|  | 3 | **ABWF Woks** |  | 2012-10-09 | 2013-06-08 |  |  |  |  |  |  |  |  |  |  |  |  |
| 823B-H-SHK-A-1010 |  | Louvre frame (Zone 1) | 2d | 2012-10-09 A | 2012-10-10 A | 823B-H-SHK-Z1-1310 FS+7d, 823B-PRO-1040 | 100% |  |  |  | 100% | 100% | 823B_AB |  |  |  |  |
| 823B-H-SHK-A-1030 |  | Wet trade (Screeding, plastering and rending) (Zone 1) | 12d | 2012-10-17 A | 2012-10-31 A | 823B-H-SHK-Z1-1310 FS+14d | 100% |  |  |  | 100% | 100% | 823B_AB |  |  |  |  |
| 823B-H-SHK-A-1090 |  | Roof waterproofing | 10d | 2012-11-02 A | 2012-11-13 A | 823B-H-SHK-Z1-1310, 823B-H-SHK-Z1-1330, 823B-H-SHK-Z2-1290 | 100% |  |  |  | 100% | 100% | 823B_AB |  |  |  |  |
| 823B-H-SHK-A-1020 |  | Louvre frame (Zone 2) | 2d | 2012-11-10 A | 2012-11-12 A | 823B-H-SHK-Z2-1290 FS+7d, 823B-PRO-1040 | 100% |  |  |  | 100% | 100% | 823B_AB |  |  |  |  |
| 823B-H-SHK-A-1040 |  | Wet trade (Screeding, plastering and rending) (Zone 2) | 6d | 2012-11-19 A | 2012-11-24 A | 823B-H-SHK-Z2-1290 FS+14d | 100% |  |  |  | 100% | 100% | 823B_AB |  |  |  |  |
| 823B-H-SHK-A-1100 |  | Metal work (Catladder, cable trench cover) | 6d | 2012-11-26 A | 2012-12-01 A | 823B-H-SHK-A-1030 SS, 823B-H-SHK-A-1040 SS | 100% |  |  |  | 100% | 100% | 823B_AB |  |  |  |  |
| 823B-H-SHK-A-1050 |  | Ceiling, floor and wall coating (Zone1) | 43d | 2012-12-01 A | 2013-01-23 A | 823B-H-SHK-A-1030 | 100% |  |  |  | 100% | 100% | 823B_AB |  |  |  |  |
| 823B-H-SHK-A-1060 |  | Ceiling, floor and wall coating (Zone 2) | 43d | 2012-12-01 A | 2013-01-23 A | 823B-H-SHK-A-1040 | 100% |  |  |  | 100% | 100% | 823B_AB |  |  |  |  |
| 823B-H-SHK-A-1110 |  | Roof railing | 5d | 2012-12-01 A | 2013-06-04 A | 823B-H-SHK-A-1090 | 100% | 2012-12-01 | 2012-12-06 |  | 100% | 100% | 823B_AB |  |  |  |  |
| 823B-H-SHK-A-1070 |  | Door frame (Zone 1) | 36d | 2013-01-24 A | 2013-03-09 A | 823B-H-SHK-A-1050 | 100% |  |  |  | 100% | 100% | 823B_AB |  |  |  |  |
| 823B-H-SHK-A-1080 |  | Door frame (Zone 2) | 36d | 2013-01-24 A | 2013-03-09 A | 823B-H-SHK-A-1060 | 100% |  |  |  | 100% | 100% | 823B_AB |  |  |  |  |
| 823B-H-SHK-A-1130 |  | Mineral silicate paint | 21d | 2013-05-15 A | 2013-06-08 A | 823B-H-SHK-A-1110 FS+125d | 100% |  |  |  | 100% | 100% | 823B_AB |  |  |  |  |
| 823B-H-SHK-A-1120 |  | Door ironmongery, louvre blade | 7d | 2013-06-01 A | 2013-06-08 A | 823B-H-SHK-A-1080 FS+58d | 100% | 2013-05-24 | 2013-05-31 |  | 100% | 100% | 823B_AB |  |  |  |  |
|  | 4 | **Builder's Work in Connection with Services** |  | 2012-11-02 | 2012-12-01 |  |  |  |  |  |  |  |  |  |  |  |  |
| 823B-H-SHK-B-2000 |  | Pipe laying (stormwater system) | 18d | 2012-11-02 A | 2012-11-22 A | 823B-H-SHK-Z2-1330, 823B-H-SHK-Z1-1370 | 100% |  |  |  | 100% | 100% | 823B_AB |  |  |  |  |
| 823B-H-SHK-B-4000 |  | Earthing (main earthing & lighting protection system) | 26d | 2012-11-02 A | 2012-12-01 A | 823B-H-SHK-B-2000 SS | 100% |  |  |  | 100% | 100% | 823B_AB |  |  |  |  |
| 823B-H-SHK-B-3000 |  | Pipe laying (foulwater system) | 18d | 2012-11-12 A | 2012-12-01 A | 823B-H-SHK-B-2000 SS+21d | 100% |  |  |  | 100% | 100% | 823B_AB |  |  |  |  |
|  | 3 | **Loco Shed (SLS)** |  | 2012-09-24 | 2014-12-31 |  |  |  |  |  |  |  |  |  |  |  |  |
|  | 1 | **Structure Works** |  | 2012-09-24 | 2013-03-28 |  |  |  |  |  |  |  |  |  |  |  |  |
|  | 1 | **Footing excavation** |  | 2012-09-24 | 2012-10-09 |  |  |  |  |  |  |  |  |  |  |  |  |
| 823B-H-SLS-S-1010 |  | GL1-6 (487m³) | 6d | 2012-09-24 A | 2012-09-29 A | 823B-ERS-A5-DW-1010 | 100% |  |  | Excavation [487 Cu m] | 100% | 100% | 823B_AB | 487 | 487 | m3 | 487 |
| 823B-H-SLS-S-1020 |  | GL7-12 (487m³) | 6d | 2012-10-03 A | 2012-10-09 A | 823B-H-SLS-S-1010 | 100% |  |  | Activity Weighting [487] | 100% | 100% | 823B_AB | 487 | 487 | m3 | 487 |
|  | 2 | **Footing** |  | 2012-10-10 | 2012-11-21 |  |  |  |  |  |  |  |  |  |  |  |  |
| 823B-H-SLS-S-1030 |  | GL1-6 (142m³ conc) | 18d | 2012-10-10 A | 2012-10-31 A | 823B-H-SLS-S-1010 | 100% |  |  | Concrete [142 Cu m] | 100% | 100% | 823B_AB | 142 | 142 | m3 | 142 |
| 823B-H-SLS-S-1040 |  | GL7-12 (142m³ conc) | 18d | 2012-11-01 A | 2012-11-21 A | 823B-H-SLS-S-1020 | 100% |  |  | Concrete [142 Cu m] | 100% | 100% | 823B_AB | 142 | 142 | m3 | 142 |

| ID | WBS | Activity | Duration | Start | Finish | Predecessors | Complete | Planned start | Planned finish | Resources | user_text4 | user_text6 | user_text7 | user_integer1 | user_text1 | user_text5 | 823B_As-built |
| --- | --- | --- | --- | --- | --- | --- | --- | --- | --- | --- | --- | --- | --- | --- | --- | --- | --- |
|  | 3 | **Full height column** |  | 2012-10-29 | 2013-02-09 |  |  |  |  |  |  |  |  |  |  |  |  |
| 823B-H-SLS-S-1050 |  | GL1-6 (77m³ conc) | 35d | 2012-10-29 A | 2013-02-09 A | 823B-H-SLS-S-1030 | 100% | 2012-10-29 | 2012-12-07 | Concrete [77 Cu m] | 77 | 100% | 100% | 77 | m3 | 77 | 823B_AB |
| 823B-H-SLS-S-1060 |  | GL7-12 (77m³ conc) | 35d | 2012-10-29 A | 2013-02-09 A | 823B-H-SLS-S-1040 | 100% | 2012-10-29 | 2012-12-07 | Concrete [77 Cu m] | 77 | 100% | 100% | 77 | m3 | 77 | 823B_AB |
|  | 4 | **Basement wall up to ground level** |  | 2012-10-29 | 2012-11-24 |  |  |  |  |  |  |  |  |  |  |  |  |
| 823B-H-SLS-S-1070 |  | GL1-6 (27m³ conc) | 12d | 2012-10-29 A | 2012-11-10 A | 823B-H-SLS-S-1050 SS | 100% |  |  | Concrete [27 Cu m] | 27 | 100% | 100% | 27 | m3 | 27 | 823B_AB |
| 823B-H-SLS-S-1080 |  | GL7-12 (15m³ conc) | 12d | 2012-11-12 A | 2012-11-24 A | 823B-H-SLS-S-1060 SS | 100% |  |  | Concrete [15 Cu m] | 15 | 100% | 100% | 15 | m3 | 15 | 823B_AB |
|  | 5 | **Backfill and underground service** |  | 2012-11-19 | 2012-12-15 |  |  |  |  |  |  |  |  |  |  |  |  |
| 823B-H-SLS-S-1090 |  | GL1-6 | 24d | 2012-11-19 A | 2012-12-15 A | 823B-H-SLS-S-1070 SS | 100% |  |  |  |  | 100% | 100% |  |  |  | 823B_AB |
| 823B-H-SLS-S-1100 |  | GL7-12 | 24d | 2012-11-19 A | 2012-12-15 A | 823B-H-SLS-S-1080 SS | 100% |  |  |  |  | 100% | 100% |  |  |  | 823B_AB |
|  | 6 | **Ground floor slab** |  | 2012-12-05 | 2012-12-22 |  |  |  |  |  |  |  |  |  |  |  |  |
| 823B-H-SLS-S-1110 |  | GL1-6 (219m³ conc) | 16d | 2012-12-05 A | 2012-12-22 A | 823B-H-SLS-S-1090 | 100% | 2012-12-17 | 2013-01-07 | Concrete [219 Cu m] | 219 | 100% | 100% | 219 | m3 | 219 | 823B_AB |
| 823B-H-SLS-S-1120 |  | GL7-12 (201m³ conc) | 15d | 2012-12-05 A | 2012-12-22 A | 823B-H-SLS-S-1100 | 100% | 2012-12-17 | 2013-01-05 | Concrete [201 Cu m] | 201 | 100% | 100% | 201 | m3 | 201 | 823B_AB |
|  | 7 | **Concrete wall to roof** |  | 2012-12-17 | 2013-03-23 |  |  |  |  |  |  |  |  |  |  |  |  |
| 823B-H-SLS-S-1130 |  | GL1-6 (200m³ conc) | 23d | 2012-12-17 A | 2013-03-23 A | 823B-H-SLS-S-1110 | 100% | 2013-01-08 | 2013-02-02 | Concrete [200 Cu m] | 200 | 100% | 100% | 200 | m3 | 200 | 823B_AB |
| 823B-H-SLS-S-1140 |  | GL7-12 (178m³ conc) | 24d | 2012-12-17 A | 2013-03-23 A | 823B-H-SLS-S-1120 | 100% | 2013-01-07 | 2013-02-02 | Concrete [178 Cu m] | 178 | 100% | 100% | 178 | m3 | 178 | 823B_AB |
|  | 8 | **Roof Slab** |  | 2013-01-14 | 2013-03-28 |  |  |  |  |  |  |  |  |  |  |  |  |
| 823B-H-SLS-S-1150 |  | GL1-6 (198m³ conc) | 21d | 2013-01-14 A | 2013-03-28 A | 823B-H-SLS-S-1130 | 100% | 2013-02-04 | 2013-03-02 | Concrete [198 Cu m] | 198 | 100% | 100% | 198 | m3 | 198 | 823B_AB |
| 823B-H-SLS-S-1160 |  | GL7-12 (198m³ conc) | 21d | 2013-01-14 A | 2013-03-28 A | 823B-H-SLS-S-1140 | 100% | 2013-02-04 | 2013-03-02 | Concrete [198 Cu m] | 198 | 100% | 100% | 198 | m3 | 198 | 823B_AB |
|  | 2 | **ABWF Works** |  | 2013-04-03 | 2014-12-31 |  |  |  |  |  |  |  |  |  |  |  |  |
| 823B-H-SLS-A-1010 |  | Blockwall | 12d | 2013-04-03 A | 2013-04-17 A | 823B-H-SLS-S-1150 SS+44d, 823B-PRO-1050 | 100% |  |  |  |  | 100% | 100% |  |  |  | 823B_AB |
| 823B-H-SLS-A-1020 |  | Door frame | 12d | 2013-04-08 A | 2013-04-20 A | 823B-H-SLS-A-1010 SS+3d | 100% |  |  |  |  | 100% | 100% |  |  |  | 823B_AB |
| 823B-H-SLS-A-1030 |  | Wall Wet Trade | 18d | 2013-04-12 A | 2013-05-03 A | 823B-H-SLS-A-1020 SS+4d, 823B-H-SLS-S-1160 | 100% |  |  |  |  | 100% | 100% |  |  |  | 823B_AB |
| 823B-H-SLS-A-1040 |  | Floor Wet Trade | 18d | 2013-04-17 A | 2013-05-08 A | 823B-H-SLS-A-1030 SS+4d | 100% |  |  |  |  | 100% | 100% |  |  |  | 823B_AB |
| 823B-H-SLS-A-1050 |  | Louvre and Window Frame | 18d | 2013-06-01 A | 2013-06-17 A | 823B-H-SLS-S-1150 FS+18d | 100% | 2013-03-25 | 2013-04-18 |  |  | 100% | 100% |  |  |  | 823B_AB |
| 823B-H-SLS-A-1060 |  | Metal work (Catladder, railing…) | 18d | 2013-06-01 A | 2013-06-22 A | 823B-H-SLS-S-1150 FS+18d | 100% | 2013-03-25 | 2013-04-18 |  |  | 100% | 100% |  |  |  | 823B_AB |
| 823B-H-SLS-A-1070 |  | Wall and Ceiling Coating | 24d | 2013-06-01 A | 2013-06-29 A | 823B-H-SLS-A-1010 | 100% | 2013-04-18 | 2013-05-16 |  |  | 100% | 100% |  |  |  | 823B_AB |
| 823B-H-SLS-A-1080 |  | Roof Skylight | 27d | 2013-06-01 A | 2013-07-04 A | 823B-H-SLS-S-1150, 823B-H-SLS-S-1160 | 100% | 2013-03-04 | 2013-04-08 |  |  | 100% | 100% |  |  |  | 823B_AB |
| 823B-H-SLS-A-1090 |  | Roof Waterproofing | 27d | 2013-06-01 A | 2013-06-29 A | 823B-H-SLS-A-1080, 823B-H-SLS-S-1150, 823B-H-SLS-S-1160 | 100% | 2013-04-09 | 2013-05-10 |  |  | 100% | 100% |  |  |  | 823B_AB |
| 823B-H-SLS-A-1140 |  | Wall and Floor Tile | 24d | 2013-08-12 A | 2013-09-07 A | 823B-H-SLS-A-1030 FS+82d, 823B-H-SLS-A-1040 | 100% |  |  |  |  | 100% | 100% |  |  |  | 823B_AB |
| 823B-H-SLS-A-1100 |  | Window Glasses | 24d | 2013-09-02 A | 2013-09-30 A | 823B-H-SLS-A-1050 | 100% | 2013-04-19 | 2013-05-18 |  |  | 100% | 100% |  |  |  | 823B_AB |
| 823B-H-SLS-A-1110 |  | External Wall Paint | 30d | 2014-10-03 A | 2014-10-30 A | 823B-H-SLS-A-1100 | 100% | 2014-10-03 | 2014-11-06 |  |  | 100% | 100% |  |  |  | 823B_AB |
| 823B-H-SLS-A-1130 |  | Door Leaf | 37d | 2014-10-03 A | 2014-10-30 A | 823B-H-SLS-A-1020 FS+200d | 100% | 2014-10-03 | 2014-11-14 |  |  | 100% | 100% |  |  |  | 823B_AB |
| 823B-H-SLS-A-1120 |  | Architectural Pin | 30d | 2014-12-01 A | 2014-12-31 A | 823B-H-SLS-A-1110 | 100% | 2014-12-01 | 2015-01-07 |  |  | 100% | 100% |  |  |  | 823B_AB |

| ID | WBS | Activity | Duration | Start | Finish | Predecessors | Complete | Planned start | Planned finish | Resources | user_text6 | user_text7 | 823B_As-built | user_text4 | user_integer1 | user_text1 | user_text5 |
| --- | --- | --- | --- | --- | --- | --- | --- | --- | --- | --- | --- | --- | --- | --- | --- | --- | --- |
|  | 3 | **Builder's Work in Connection with Services** |  | 2013-04-02 | 2013-06-19 |  |  |  |  |  |  |  |  |  |  |  |  |
| 823B-H-SLS-B-2000 |  | Pipe laying (stormwater system) | 40d | 2013-04-02 A | 2013-05-21 A | 823B-H-SLS-S-1160 | 100% | 2013-03-04 | 2013-04-23 |  | 100% | 100% | 823B_AB |  |  |  |  |
| 823B-H-SLS-B-3000 |  | Pipe laying (foulwater system) | 40d | 2013-04-17 A | 2013-06-04 A | 823B-H-SLS-B-2000 SS+12d | 100% | 2013-03-18 | 2013-05-08 |  | 100% | 100% | 823B_AB |  |  |  |  |
| 823B-H-SLS-B-4000 |  | Earthing (lighting protection system) | 40d | 2013-05-02 A | 2013-06-19 A | 823B-H-SLS-B-3000 SS+12d | 100% | 2013-04-05 | 2013-05-23 |  | 100% | 100% | 823B_AB |  |  |  |  |
|  | 4 | **Dangerous Goods Store & Diesel Filling Station** |  | 2012-09-28 | 2014-12-13 |  |  |  |  |  |  |  |  |  |  |  |  |
|  | 1 | **Dangerous Goods Store** |  | 2012-09-28 | 2014-09-19 |  |  |  |  |  |  |  |  |  |  |  |  |
|  | 1 | **Site Formation / Earthwork** |  | 2012-09-28 | 2012-10-20 |  |  |  |  |  |  |  |  |  |  |  |  |
| 823B-H-DGS-S-1010 |  | Excavation for footing foundation (800m³) | 6d | 2012-09-28 A | 2012-10-06 A | 823B-H-SLS-S-1010 SS | 100% |  |  | Excavation [800 Cu m]; Labour [1 NO]; Operator [1 NO]; Other - Plant & Equipment [1 NO]; Labour [48 h]; Operator [48 h]; Other - Plant & Equipment [48 h] | 100% | 100% | 823B_AB | 800 | 800 | m3 | 800 |
| 823B-H-DGS-S-1020 |  | Backfilling (740m³) | 6d | 2012-10-15 A | 2012-10-20 A | 823B-H-DGS-S-1040 | 100% |  |  | Labour [1 NO]; Operator [1 NO]; Other - Plant & Equipment [1 NO]; Labour [48 h]; Operator [48 h]; Backfilling [740 Cu m]; Other - Plant & Equipment [48 h] | 100% | 100% | 823B_AB | 740 | 740 | m3 | 740 |
|  | 2 | **Civil and Structure** |  | 2012-10-03 | 2012-12-08 |  |  |  |  |  |  |  |  |  |  |  |  |
| 823B-H-DGS-S-1030 |  | Footing (46m³ conc) | 10d | 2012-10-03 A | 2012-10-13 A | 823B-H-DGS-S-1010 | 100% |  |  | Rebar [7 t]; Concrete (Buildings & External) [46 Cu m]; Concrete [46 Cu m]; Labour [16 NO]; Labour [2304 h] | 100% | 100% | 823B_AB | 46 | 46 | m3 | 46 |
| 823B-H-DGS-S-1040 |  | Column (below ground) (7m³ conc) | 7d | 2012-10-06 A | 2012-10-13 A | 823B-H-DGS-S-1030 | 100% |  |  | Labour [1536 h]; Labour [16 NO]; Concrete [7 Cu m]; Concrete (Buildings & External) [7 Cu m]; Rebar [2 t] | 100% | 100% | 823B_AB | 7 | 7 | m3 | 7 |
| 823B-H-DGS-S-1060 |  | Column (above ground) (15m³ conc) | 7d | 2012-10-15 A | 2012-10-22 A | 823B-H-DGS-S-1050 | 100% |  |  | Concrete [15 Cu m]; Concrete (Buildings & External) [15 Cu m]; Rebar [3 t]; Labour [14 NO]; Labour [2016 h] | 100% | 100% | 823B_AB | 15 | 15 | m3 | 15 |
| 823B-H-DGS-S-1050 |  | On-grade slab (54m³ conc) | 24d | 2012-10-22 A | 2012-11-19 A | 823B-H-DGS-S-1020 | 100% |  |  | Concrete [54 Cu m]; Concrete (Buildings & External) [54 Cu m]; Rebar [7 t]; Labour [16 NO]; Labour [3072 h] | 100% | 100% | 823B_AB | 54 | 54 | m3 | 54 |
| 823B-H-DGS-S-1070 |  | Roof beam & slab (96m³ conc) | 36d | 2012-11-19 A | 2012-12-03 A | 823B-H-DGS-S-1060 | 100% | 2012-11-19 | 2013-01-02 | Concrete [96 Cu m]; Concrete (Buildings & External) [96 Cu m]; Rebar [16 t]; Labour [24 NO]; Labour [6912 h] | 100% | 100% | 823B_AB | 96 | 96 | m3 | 96 |
| 823B-H-DGS-S-1090 |  | Non-load bearing R.C. walls (104m³ conc) | 22d | 2012-11-19 A | 2012-12-03 A | 823B-H-DGS-S-1070 SS | 100% | 2012-11-19 | 2012-12-13 | Concrete [104 Cu m]; Concrete (Buildings & External) [104 Cu m]; Rebar [16 t]; Labour [14 NO]; Labour [2464 h] | 100% | 100% | 823B_AB | 104 | 104 | m3 | 104 |
| 823B-H-DGS-S-1080 |  | Parapet wall (8m³ conc) | 18d | 2012-12-04 A | 2012-12-08 A | 823B-H-DGS-S-1070 | 100% | 2013-01-03 | 2013-01-23 | Labour [2016 h]; Labour [14 NO]; Concrete [8 Cu m]; Concrete (Buildings & External) [8 Cu m]; Rebar [2 t] | 100% | 100% | 823B_AB | 8 | 8 | m3 | 8 |
|  | 3 | **ABWF Works** |  | 2013-01-24 | 2014-09-19 |  |  |  |  |  |  |  |  |  |  |  |  |
| 823B-H-DGS-A-1010 |  | Blockwall | 24d | 2013-01-24 A | 2013-02-23 A | 823B-H-DGS-S-1090, 823B-H-DGS-S-1070, 823B-H-DGS-S-1080, 823B-PRO-1050 SS | 100% |  |  | Labour [864 h]; Labour [6 NO] | 100% | 100% | 823B_AB |  |  |  |  |
| 823B-H-DGS-A-1020 |  | Wall and Ceiling Wet Trade | 24d | 2013-01-24 A | 2013-02-23 A | 823B-H-DGS-A-1010 | 100% | 2013-02-25 | 2013-03-23 | Labour [9 NO]; Labour [1728 h] | 100% | 100% | 823B_AB |  |  |  |  |
| 823B-H-DGS-A-1030 |  | Internal Floor Waterproofing | 24d | 2013-01-24 A | 2013-02-23 A | 823B-H-DGS-A-1020, 823B-H-DGS-S-1090 | 100% | 2013-03-25 | 2013-04-25 | Labour [1728 h]; Labour [6 NO] | 100% | 100% | 823B_AB |  |  |  |  |
| 823B-H-DGS-A-1040 |  | Floor Wet Trade | 24d | 2013-01-24 A | 2013-02-23 A | 823B-H-DGS-A-1030 | 100% | 2013-04-26 | 2013-05-25 | Labour [6 NO]; Labour [576 h] | 100% | 100% | 823B_AB |  |  |  |  |
| 823B-H-DGS-A-1110 |  | Waterproofing (Roof) | 12d | 2013-01-24 A | 2013-02-06 A | 823B-H-DGS-S-1080, 823B-H-DGS-S-1090 | 100% |  |  | Labour [6 NO]; Labour [576 h] | 100% | 100% | 823B_AB |  |  |  |  |
| 823B-H-DGS-A-1100 |  | Metal Work | 12d | 2013-02-07 A | 2013-02-23 A | 823B-H-DGS-A-1050, 823B-H-DGS-S-1090 | 100% | 2013-06-25 | 2013-07-09 | Labour [576 h]; Labour [6 NO] | 100% | 100% | 823B_AB |  |  |  |  |
| 823B-H-DGS-A-1120 |  | Protetion Screeding | 12d | 2013-02-07 A | 2013-02-23 A | 823B-H-DGS-A-1110 | 100% |  |  | Labour [576 h]; Labour [6 NO] | 100% | 100% | 823B_AB |  |  |  |  |
| 823B-H-DGS-A-1060 |  | Door Frame | 48d | 2013-05-06 A | 2013-06-29 A | 823B-H-DGS-A-1010 SS+205d, 823B-H-DGS-S-1090 SS | 100% | 2013-10-05 | 2013-11-30 | Labour [7 NO]; Labour [2688 h] | 100% | 100% | 823B_AB |  |  |  |  |
| 823B-H-DGS-A-1050 |  | Wall Tile | 24d | 2013-06-01 A | 2013-06-29 A | 823B-H-DGS-A-1040 | 100% | 2013-05-27 | 2013-06-24 | Labour [576 h]; Labour [6 NO] | 100% | 100% | 823B_AB |  |  |  |  |
| 823B-H-DGS-A-1070 |  | Louvre | 18d | 2013-06-10 A | 2013-06-29 A | 823B-H-DGS-A-1010, 823B-H-DGS-A-1050 | 100% | 2013-06-25 | 2013-07-16 | Labour [864 h]; Labour [6 NO] | 100% | 100% | 823B_AB |  |  |  |  |
| 823B-H-DGS-A-1080 |  | Wall and Ceiling Painting | 12d | 2013-06-17 A | 2013-06-29 A | 823B-H-DGS-A-1050, 823B-H-DGS-A-1070 | 100% | 2013-07-17 | 2013-07-30 | Labour [576 h]; Labour [6 NO] | 100% | 100% | 823B_AB |  |  |  |  |
| 823B-H-DGS-A-1090 |  | Door Leaf | 16d | 2014-09-01 A | 2014-09-19 A | 823B-H-DGS-A-1060 FS+56d | 100% |  |  | Labour [6 NO]; Labour [576 h] | 100% | 100% | 823B_AB |  |  |  |  |

| ID | WBS | Activity | Duration | Start | Finish | Predecessors | Complete | Planned start | Planned finish | Resources | user_text6 | user_text7 | 823B_As-built | user_text4 | user_integer1 | user_text1 | user_text5 | Time Gain / Loss |
| --- | --- | --- | --- | --- | --- | --- | --- | --- | --- | --- | --- | --- | --- | --- | --- | --- | --- | --- |
|  | 4 | **Builder's Work in Connection with Services** |  | 2012-12-10 | 2013-06-07 |  |  |  |  |  |  |  |  |  |  |  |  |  |
| 823B-H-DGS-B-2000 |  | Pipe laying (stormwater system) | 72d | 2012-12-10 A | 2013-03-08 A | 823B-H-DGS-S-1080 | 100% | 2013-01-24 | 2013-04-25 |  | 100% | 100% | 823B_AB |  |  |  |  |  |
| 823B-H-DGS-B-2010 |  | Earthing (lighting protection system) | 72d | 2013-03-09 A | 2013-06-07 A | 823B-H-DGS-S-1080, 823B-H-DGS-B-2000 | 100% | 2013-04-26 | 2013-07-23 |  | 100% | 100% | 823B_AB |  |  |  |  |  |
|  | 2 | **Diesel Filling Station** |  | 2012-12-31 | 2014-12-13 |  |  |  |  |  |  |  |  |  |  |  |  |  |
|  | 1 | **Site Formation / Earthwork** |  | 2012-12-31 | 2013-01-03 |  |  |  |  |  |  |  |  |  |  |  |  |  |
| 823B-H-DFS-S-1010 |  | Excavation to formation level (75m³) | 2d | 2012-12-31 A | 2012-12-31 A | 823B-H-SLS-S-1150, 823B-H-SLS-S-1160 | 100% | 2013-03-04 | 2013-03-05 | Labour [7 NO]; Labour [112 h]; Operator [1 NO]; Operator [16 h]; Other - Plant & Equipment [1 NO]; Excavation [75 Cu m]; Other - Plant & Equipment [16 h] | 100% | 100% | 823B_AB | 75 | 75 | m3 | 75 |  |
| 823B-H-DFS-S-1020 |  | Excavation for trench and underground fuel tank (173m³) | 2d | 2013-01-02 A | 2013-01-03 A | 823B-H-DFS-S-1010 | 100% | 2013-03-06 | 2013-03-07 | Excavation [173 Cu m]; Labour [4 NO]; Operator [1 NO]; Other - Plant & Equipment [1 NO]; Labour [64 h]; Operator [16 h]; Other - Plant & Equipment [16 h] | 100% | 100% | 823B_AB | 173 | 173 | m3 | 173 |  |
|  | 2 | **Civil and Structure** |  | 2013-01-04 | 2013-11-14 |  |  |  |  |  |  |  |  |  |  |  |  |  |
| 823B-H-DFS-S-1030 |  | Construct trench for underground tank (89m³ conc) | 24d | 2013-01-04 A | 2013-06-05 A | 823B-H-DFS-S-1020 FS+6d | 100% | 2013-03-15 | 2013-04-16 | Operator [192 h]; Labour [2304 h]; Labour [12 NO]; Operator [1 NO]; Other - Plant & Equipment [1 NO]; Backfilling [89 Cu m]; Concrete [27 Cu m]; Concrete (Buildings & External) [27 Cu m]; Rebar [3 t]; Other - Plant & Equipment [192 h] | 100% | 100% | 823B_AB | 89 | 89 | m3 | 89 |  |
| 823B-H-DFS-S-1040 |  | Construct ground slab (10m³ conc) | 12d | 2013-07-11 A | 2013-07-24 A | 823B-H-DFS-S-1030, 823B-H-DFS-S-1010 FS+6d | 100% | 2013-04-17 | 2013-04-30 | Labour [16 NO]; Labour [1536 h]; Operator [96 h]; Operator [1 NO]; Other - Plant & Equipment [1 NO]; Rebar [1 t]; Concrete [10 Cu m]; Concrete (Buildings & External) [10 Cu m]; Other - Plant & Equipment [96 h] | 100% | 100% | 823B_AB | 10 | 10 | m3 | 10 |  |
| 823B-H-DFS-S-1060 |  | Structural steel columns and beams | 12d | 2013-07-26 A | 2013-08-24 A | 823B-H-DFS-S-1050 | 100% | 2013-05-16 | 2013-05-30 | Labour [9 NO]; Operator [1 NO]; Other - Plant & Equipment [1 NO]; Labour [864 h]; Operator [96 h]; Other - Plant & Equipment [96 h] | 100% | 100% | 823B_AB |  |  |  |  |  |
| 823B-H-DFS-S-1050 |  | Waterproofing | 12d | 2013-08-01 A | 2013-08-14 A | 823B-H-DFS-S-1040 | 100% | 2013-05-02 | 2013-05-15 | Labour [288 h]; Labour [3 NO] | 100% | 100% | 823B_AB |  |  |  |  |  |
| 823B-H-DFS-S-1070 |  | Painting structural steel | 12d | 2013-08-26 A | 2013-09-07 A | 823B-H-DFS-S-1060 | 100% | 2013-05-31 | 2013-06-14 | Labour [288 h]; Labour [3 NO] | 100% | 100% | 823B_AB |  |  |  |  |  |
| 823B-H-DFS-S-1080 |  | Surface channel with cast iron cover | 12d | 2013-11-01 A | 2013-11-14 A | 823B-H-DFS-S-1070 | 100% | 2013-06-15 | 2013-06-28 | Labour [384 h]; Operator [96 h]; Labour [4 NO]; Operator [1 NO]; Other - Plant & Equipment [1 NO]; Other - Plant & Equipment [96 h] | 100% | 100% | 823B_AB |  |  |  |  |  |
|  | 3 | **ABWF Works** |  | 2014-12-01 | 2014-12-13 |  |  |  |  |  |  |  |  |  |  |  |  |  |
| 823B-H-DFS-A-2010 |  | Galvanised corrugated steel metal roof | 12d | 2014-12-01 A | 2014-12-13 A | 823B-H-DFS-S-1030, 823B-H-DFS-S-1040, 823B-H-DFS-S-1050, 823B-H-DFS-S-1060, 823B-H-DFS-S-1070, 823B-H-DFS-S-1080, 823B-PRO-1050 | 100% |  |  | Labour [14 NO]; Operator [1 NO]; Other - Plant & Equipment [1 NO]; Labour [1344 h]; Operator [96 h]; Other - Plant & Equipment [96 h] | 100% | 100% | 823B_AB |  |  |  |  | -25 |
|  | 5 | **Security Operation Room & Water Pump House** |  | 2012-11-09 | 2015-04-25 |  |  |  |  |  |  |  |  |  |  |  |  |  |
|  | 1 | **Security Operation Room** |  | 2012-11-09 | 2015-04-25 |  |  |  |  |  |  |  |  |  |  |  |  |  |
|  | 1 | **Site Formation / Earthwork** |  | 2012-11-09 | 2015-03-28 |  |  |  |  |  |  |  |  |  |  |  |  |  |
| 823B-H-SOC-S-1010 |  | Excavation to formation level (1,130m³) | 8d | 2012-11-09 A | 2012-11-17 A | 823B-SFE-1010 FS+355d | 100% |  |  | Operator [320 h]; Labour [256 h]; Labour [4 NO]; Operator [5 NO]; Other - Plant & Equipment [5 NO]; Excavation [1130 Cu m]; Other - Plant & Equipment [320 h] | 100% | 100% | 823B_AB | 1130 | 1130 | m3 | 1130 |  |
| 823B-H-SOC-S-1020 |  | Excavation for steel canopy footing (927m³) | 6d | 2013-04-17 A | 2013-04-27 A | 823B-H-SOC-S-1010 | 100% | 2012-12-01 | 2012-12-07 | Excavation [927 Cu m]; Labour [4 NO]; Operator [3 NO]; Other - Plant & Equipment [3 NO]; Labour [192 h]; Operator [144 h]; Other - Plant & Equipment [144 h] | 100% | 100% | 823B_AB | 927 | 927 | m3 | 927 |  |
| 823B-H-SOC-S-1030 |  | Backfilling to steel canopy footing (844m³) | 6d | 2013-07-02 A | 2013-07-08 A | 823B-H-SOC-S-1050 | 100% | 2013-01-02 | 2013-01-08 | Backfilling [844 Cu m]; Labour [4 NO]; Operator [3 NO]; Other - Plant & Equipment [3 NO]; Labour [192 h]; Operator [144 h]; Other - Plant & Equipment [144 h] | 100% | 100% | 823B_AB | 844 | 844 | m3 | 844 |  |
| 823B-H-SOC-S-1040 |  | Filter layer and formation of earth mound | 18d | 2015-03-09 A | 2015-03-28 A | 823B-H-SOC-S-1090, 823B-RWS-1020 | 100% |  |  | Operator [864 h]; Labour [576 h]; Other - Plant & Equipment [6 NO]; Operator [6 NO]; Labour [4 NO]; Other - Plant & Equipment [864 h] | 100% | 100% | 823B_AB |  |  |  |  |  |
|  | 2 | **Civil and Structure** |  | 2012-11-13 | 2013-05-27 |  |  |  |  |  |  |  |  |  |  |  |  |  |
| 823B-H-SOC-S-1060 |  | Construct base slab + underground utilities (135m³ conc) | 36d | 2012-11-13 A | 2012-11-26 A | 823B-H-SOC-S-1010 | 100% | 2012-11-13 | 2012-12-24 | Concrete (Buildings & External) [135 Cu m]; Rebar [18 t]; Concrete [135 Cu m]; Labour [24 NO]; Labour [6912 h] | 100% | 100% | 823B_AB | 135 | 135 | m3 | 135 |  |
| 823B-H-SOC-S-1070 |  | Construct walls and colunms (121m³ conc) | 24d | 2012-11-21 A | 2012-12-24 A | 823B-H-SOC-S-1060 SS | 100% | 2012-11-21 | 2012-12-18 | Concrete [121 Cu m]; Concrete (Buildings & External) [121 Cu m]; Rebar [20 t]; Labour [18 NO]; Labour [3456 h] | 100% | 100% | 823B_AB | 121 | 121 | m3 | 121 |  |
| 823B-H-SOC-S-1080 |  | Mass concrete fill (293m³ conc) | 24d | 2012-12-03 A | 2012-12-15 A | 823B-H-SOC-S-1070 | 100% | 2012-12-19 | 2013-01-18 | Labour [3072 h]; Labour [16 NO]; Concrete [293 Cu m]; Concrete (Buildings & External) [293 Cu m] | 100% | 100% | 823B_AB | 293 | 293 | m3 | 293 |  |
| 823B-H-SOC-S-1090 |  | Construct roof beam and slabs (377m³ conc) | 28d | 2012-12-10 A | 2013-01-05 A | 823B-H-SOC-S-1080 | 100% | 2013-01-19 | 2013-02-23 | Rebar [18 t]; Concrete (Buildings & External) [377 Cu m]; Concrete [377 Cu m]; Labour [18 NO]; Labour [4032 h] | 100% | 100% | 823B_AB | 377 | 377 | m3 | 377 |  |
| 823B-H-SOC-S-1050 |  | Construt steel canopy footings (84m³ conc) | 12d | 2013-04-29 A | 2013-05-27 A | 823B-H-SOC-S-1020 FS+6d | 100% | 2012-12-15 | 2012-12-31 | Concrete (Buildings & External) [84 Cu m]; Rebar [12 t]; Concrete [84 Cu m]; Labour [14 NO]; Labour [1344 h] | 100% | 100% | 823B_AB | 84 | 84 | m3 | 84 |  |

| ID | WBS | Activity | Duration | Start | Finish | Predecessors | Complete | Planned start | Planned finish | Resources | user_text6 | user_text7 | 823B_As-built | user_text4 | user_integer1 | user_text1 | user_text5 |
| --- | --- | --- | --- | --- | --- | --- | --- | --- | --- | --- | --- | --- | --- | --- | --- | --- | --- |
|  | 3 | **ABWF Works** |  | 2013-01-04 | 2015-04-25 |  |  |  |  |  |  |  |  |  |  |  |  |
| 823B-H-SOC-A-1010 |  | Wall and Ceiling Wet Trade | 18d | 2013-01-04 A | 2013-01-24 A | 823B-H-SOC-S-1090, 823B-PRO-1050 SS | 100% | 2013-02-25 | 2013-03-16 | Labour [1152 h]; Labour [12 NO] | 100% | 100% | 823B_AB |  |  |  |  |
| 823B-H-SOC-A-1020 |  | Waterproofing inside Room | 6d | 2013-01-25 A | 2013-01-31 A | 823B-H-SOC-A-1010 | 100% | 2013-03-18 | 2013-03-23 | Labour [8 NO]; Labour [1152 h] | 100% | 100% | 823B_AB |  |  |  |  |
| 823B-H-SOC-A-1030 |  | Floor Wet Trade | 12d | 2013-02-01 A | 2013-02-18 A | 823B-H-SOC-A-1020 | 100% | 2013-03-25 | 2013-04-11 | Labour [5184 h]; Labour [8 NO] | 100% | 100% | 823B_AB |  |  |  |  |
| 823B-H-SOC-A-1140 |  | Waterproofing on Outside Wall and Roofing | 18d | 2013-02-07 A | 2013-03-02 A | 823B-H-SOC-A-1120 SS+23d | 100% | 2013-04-26 | 2013-05-18 |  | 100% | 100% | 823B_AB |  |  |  |  |
| 823B-H-SOC-A-1040 |  | Window Frame | 12d | 2013-06-01 A | 2013-06-15 A | 823B-H-SOC-A-1030 | 100% | 2013-04-12 | 2013-04-25 | Operator [1 NO]; Other - Plant & Equipment [1 NO]; Operator [192 h]; Labour [1344 h]; Labour [7 NO]; Other - Plant & Equipment [192 h] | 100% | 100% | 823B_AB |  |  |  |  |
| 823B-H-SOC-A-1110 |  | Structural Steelwork for Canopy | 30d | 2013-06-01 A | 2013-06-29 A | 823B-H-SOC-S-1090 SS+23d, 823B-H-SOC-S-1050 | 100% | 2013-02-19 | 2013-03-25 | Labour [10088 h]; Operator [776 h]; Labour [13 NO]; Operator [1 NO]; Other - Plant & Equipment [1 NO]; Other - Plant & Equipment [776 h] | 100% | 100% | 823B_AB |  |  |  |  |
| 823B-H-SOC-A-1060 |  | Wall and Floor Tile | 18d | 2013-06-03 A | 2013-06-22 A | 823B-H-SOC-A-1010 FS+189d, 823B-H-SOC-A-1030 FS+171d | 100% | 2013-11-06 | 2013-11-26 | Labour [2592 h]; Labour [9 NO] | 100% | 100% | 823B_AB |  |  |  |  |
| 823B-H-SOC-A-1050 |  | Wall and Ceiling Paint | 6d | 2013-06-17 A | 2013-06-22 A | 823B-H-SOC-A-1040 | 100% | 2013-04-26 | 2013-05-03 | Labour [12 NO]; Labour [1728 h] | 100% | 100% | 823B_AB |  |  |  |  |
| 823B-H-SOC-A-1070 |  | Ceiling Service Panel | 18d | 2013-07-02 A | 2013-07-22 A | 823B-H-SOC-A-1060 | 100% | 2013-11-27 | 2013-12-17 | Labour [10 NO]; Labour [4160 h] | 100% | 100% | 823B_AB |  |  |  |  |
| 823B-H-SOC-A-1150 |  | Protection | 24d | 2013-07-25 A | 2013-08-21 A | 823B-H-SOC-A-1140 | 100% | 2013-05-20 | 2013-06-17 |  | 100% | 100% | 823B_AB |  |  |  |  |
| 823B-H-SOC-A-1130 |  | Ceiling and Cladding | 30d | 2013-11-01 A | 2013-11-30 A | 823B-H-SOC-A-1120 FS+204d | 100% | 2014-01-09 | 2014-02-15 |  | 100% | 100% | 823B_AB |  |  |  |  |
| 823B-H-SOC-A-1080 |  | Toilet Partition | 18d | 2014-01-02 A | 2014-01-22 A | 823B-H-SOC-A-1010 FS+253d, 823B-H-SOC-A-1020 FS+247d, 823B-H-SOC-A-1030 FS+235d, 823B-H-SOC-A-1040 FS+223d, 823B-H-SOC-A-1050 FS+217d, 823B-H-SOC-A-1060 FS+46d, 823B-H-SOC-A-1070 FS+28d | 100% | 2014-01-23 | 2014-02-15 | Labour [3328 h]; Labour [8 NO] | 100% | 100% | 823B_AB |  |  |  |  |
| 823B-H-SOC-A-1090 |  | Sanitary Ware and Toilet Accessories | 12d | 2014-01-02 A | 2014-01-15 A | 823B-H-SOC-A-1080 SS | 100% | 2014-01-23 | 2014-02-08 | Labour [14 NO]; Labour [5824 h] | 100% | 100% | 823B_AB |  |  |  |  |
| 823B-H-SOC-A-1100 |  | Ceiling panel | 18d | 2014-01-02 A | 2014-01-22 A | 823B-H-SOC-A-1090 SS | 100% | 2014-01-23 | 2014-02-15 | Labour [1176 h]; Labour [3 NO] | 100% | 100% | 823B_AB |  |  |  |  |
| 823B-H-SOC-A-1120 |  | Roofing | 30d | 2014-05-02 A | 2014-10-09 A | 823B-H-SOC-A-1110 | 100% | 2014-05-02 | 2014-06-07 | Labour [15 NO]; Operator [1 NO]; Other - Plant & Equipment [1 NO]; Labour [12000 h]; Operator [800 h]; Other - Plant & Equipment [800 h] | 100% | 100% | 823B_AB |  |  |  |  |
| 823B-H-SOC-A-1160 |  | Backfilling | 26d | 2015-03-02 A | 2015-04-25 A | 823B-H-SOC-A-1150 FS+61d | 100% | 2015-03-02 | 2015-03-31 |  | 100% | 100% | 823B_AB |  |  |  |  |
|  | 4 | **Builder's Work in Connection with Services** |  | 2013-01-07 | 2013-04-08 |  |  |  |  |  |  |  |  |  |  |  |  |
| 823B-H-SOC-B-2000 |  | Pipe laying (stormwater system) | 48d | 2013-01-07 A | 2013-03-05 A | 823B-H-SOC-S-1090 | 100% | 2013-02-25 | 2013-04-25 |  | 100% | 100% | 823B_AB |  |  |  |  |
| 823B-H-SOC-B-3000 |  | Pipe laying (foulwater system) | 48d | 2013-01-21 A | 2013-03-20 A | 823B-H-SOC-B-2000 SS+12d | 100% | 2013-03-11 | 2013-05-10 |  | 100% | 100% | 823B_AB |  |  |  |  |
| 823B-H-SOC-B-4000 |  | Earthing (lighting protection system) | 48d | 2013-02-04 A | 2013-04-08 A | 823B-H-SOC-B-3000 SS+12d | 100% | 2013-03-25 | 2013-05-25 |  | 100% | 100% | 823B_AB |  |  |  |  |
|  | 2 | **Water Pump House** |  | 2012-11-20 | 2014-09-11 |  |  |  |  |  |  |  |  |  |  |  |  |
|  | 1 | **Site Formation / Earthwork** |  | 2012-11-20 | 2013-02-05 |  |  |  |  |  |  |  |  |  |  |  |  |
| 823B-H-WPH-S-1010 |  | Excavation to foundation level (approx. +13.05) | 5d | 2012-11-20 A | 2012-11-24 A | 823B-SFE-1010 | 100% |  |  |  | 100% | 100% | 823B_AB |  |  |  |  |
| 823B-H-WPH-S-1020 |  | Excavation for footing and trench | 2d | 2012-11-26 A | 2012-11-27 A | 823B-H-WPH-S-1010 | 100% |  |  |  | 100% | 100% | 823B_AB |  |  |  |  |
| 823B-H-WPH-S-1040 |  | Footing & trench slab (18m³ conc) | 14d | 2012-11-28 A | 2013-01-17 A | 823B-H-WPH-S-1020 | 100% | 2012-11-28 | 2012-12-13 | Labour [1120 h]; Operator [112 h]; Labour [10 NO]; Operator [1 NO]; Other - Plant & Equipment [1 NO]; Concrete [18 Cu m]; Concrete (Buildings & External) [18 Cu m]; Rebar [2 t]; Other - Plant & Equipment [112 h] | 100% | 100% | 823B_AB | 18 | 18 | m3 | 18 |
| 823B-H-WPH-S-1030 |  | Backfilling | 2d | 2013-02-04 A | 2013-02-05 A | 823B-H-WPH-S-1050 | 100% | 2012-12-31 | 2013-01-02 |  | 100% | 100% | 823B_AB |  |  |  |  |

| ID | WBS | Activity | Duration | Start | Finish | Predecessors | Complete | Planned start | Planned finish | Resources | user_text4 | user_text6 | user_text7 | user_integer1 | user_text1 | user_text5 | 823B_As-built | Time Gain / Loss |
| --- | --- | --- | --- | --- | --- | --- | --- | --- | --- | --- | --- | --- | --- | --- | --- | --- | --- | --- |
|  | 2 | **Civil and Structure** |  | 2012-12-10 | 2013-03-23 |  |  |  |  |  |  |  |  |  |  |  |  |  |
| 823B-H-WPH-S-1050 |  | Column (below ground) and trench walls & slab (5m³ conc) | 12d | 2012-12-10 A | 2013-01-21 A | 823B-H-WPH-S-1040 | 100% | 2012-12-14 | 2012-12-29 | Rebar [1 t]; Concrete (Buildings & External) [5 Cu m]; Concrete [5 Cu m]; Labour [10 NO]; Operator [1 NO]; Other - Plant & Equipment [1 NO]; Labour [960 h]; Operator [96 h]; Other - Plant & Equipment [96 h] | 5 | 100% | 100% | 5 | m3 | 5 | 823B_AB |  |
| 823B-H-WPH-S-1070 |  | Column (above ground) (5m³ conc) | 12d | 2012-12-10 A | 2013-02-02 A | 823B-H-WPH-S-1060 | 100% | 2013-01-24 | 2013-02-06 | Labour [10 NO]; Operator [1 NO]; Other - Plant & Equipment [1 NO]; Labour [960 h]; Operator [96 h]; Rebar [1 t]; Concrete (Buildings & External) [5 Cu m]; Concrete [5 Cu m]; Other - Plant & Equipment [96 h] | 5 | 100% | 100% | 5 | m3 | 5 | 823B_AB |  |
| 823B-H-WPH-S-1060 |  | On-grade slab (22m³ conc) | 18d | 2012-12-24 A | 2013-02-19 A | 823B-H-WPH-S-1030 | 100% | 2013-01-03 | 2013-01-23 | Operator [144 h]; Labour [1440 h]; Labour [10 NO]; Operator [1 NO]; Other - Plant & Equipment [1 NO]; Concrete [22 Cu m]; Concrete (Buildings & External) [22 Cu m]; Rebar [3 t]; Other - Plant & Equipment [144 h] | 22 | 100% | 100% | 22 | m3 | 22 | 823B_AB |  |
| 823B-H-WPH-S-1080 |  | Roof beam and slab (31m³ conc) | 20d | 2013-02-20 A | 2013-02-28 A | 823B-H-WPH-S-1070 | 100% | 2013-02-07 | 2013-03-05 | Concrete [31 Cu m]; Concrete (Buildings & External) [31 Cu m]; Rebar [5 t]; Labour [20 NO]; Operator [1 NO]; Other - Plant & Equipment [1 NO]; Labour [3200 h]; Operator [160 h]; Other - Plant & Equipment [160 h] | 31 | 100% | 100% | 31 | m3 | 31 | 823B_AB |  |
| 823B-H-WPH-S-1090 |  | Parapet wall (5m³ conc) | 12d | 2013-02-25 A | 2013-02-28 A | 823B-H-WPH-S-1080 | 100% | 2013-03-06 | 2013-03-19 | Operator [96 h]; Labour [960 h]; Labour [10 NO]; Operator [1 NO]; Other - Plant & Equipment [1 NO]; Concrete [5 Cu m]; Concrete (Buildings & External) [5 Cu m]; Rebar [1 t]; Other - Plant & Equipment [96 h] | 5 | 100% | 100% | 5 | m3 | 5 | 823B_AB |  |
| 823B-H-WPH-S-1100 |  | Non-load bearing R.C. walls (31m³ conc) | 20d | 2013-03-01 A | 2013-03-23 A | 823B-H-WPH-S-1090 | 100% | 2013-03-20 | 2013-04-16 | Concrete [31 Cu m]; Concrete (Buildings & External) [31 Cu m]; Rebar [5 t]; Labour [10 NO]; Operator [1 NO]; Other - Plant & Equipment [1 NO]; Labour [1600 h]; Operator [160 h]; Other - Plant & Equipment [160 h] | 31 | 100% | 100% | 31 | m3 | 31 | 823B_AB |  |
|  | 3 | **ABWF Works** |  | 2013-02-11 | 2014-09-11 |  |  |  |  |  |  |  |  |  |  |  |  |  |
| 823B-H-WPH-A-1010 |  | Blockwork | 18d | 2013-02-11 A | 2013-03-02 A | 823B-H-WPH-S-1100, 823B-PRO-1050 | 100% | 2013-04-17 | 2013-05-08 | Labour [432 h]; Labour [3 NO] |  | 100% | 100% |  |  |  | 823B_AB |  |
| 823B-H-WPH-A-1020 |  | Waterproofing inside Room | 6d | 2013-03-04 A | 2013-03-09 A | 823B-H-WPH-A-1010 | 100% | 2013-05-09 | 2013-05-15 | Labour [6 NO]; Labour [864 h] |  | 100% | 100% |  |  |  | 823B_AB |  |
| 823B-H-WPH-A-1070 |  | Roof Waterproofing | 12d | 2013-03-25 A | 2013-04-13 A | 823B-H-WPH-S-1090 | 100% | 2013-03-20 | 2013-04-06 | Labour [1200 h]; Labour [6 NO] |  | 100% | 100% |  |  |  | 823B_AB |  |
| 823B-H-WPH-A-1030 |  | Floor Wet Trade | 12d | 2013-05-11 A | 2013-05-25 A | 823B-H-WPH-A-1020 SS+2d | 100% |  |  | Labour [144 h]; Labour [3 NO] |  | 100% | 100% |  |  |  | 823B_AB |  |
| 823B-H-WPH-A-1050 |  | Door Frame | 6d | 2013-06-01 A | 2013-06-07 A | 823B-H-WPH-A-1030 | 100% | 2013-05-27 | 2013-06-01 | Labour [1008 h]; Operator [144 h]; Labour [7 NO]; Operator [1 NO]; Other - Plant & Equipment [1 NO]; Other - Plant & Equipment [144 h] |  | 100% | 100% |  |  |  | 823B_AB |  |
| 823B-H-WPH-A-1080 |  | Protection Screeding | 12d | 2013-06-01 A | 2013-06-15 A | 823B-H-WPH-A-1070 | 100% | 2013-04-08 | 2013-04-20 | Labour [6 NO]; Labour [1200 h] |  | 100% | 100% |  |  |  | 823B_AB |  |
| 823B-H-WPH-A-1040 |  | Louvre | 12d | 2013-07-02 A | 2013-09-03 A | 823B-H-WPH-A-1030 | 100% | 2013-05-27 | 2013-06-08 | Labour [6 NO]; Labour [5952 h] |  | 100% | 100% |  |  |  | 823B_AB |  |
| 823B-H-WPH-A-1060 |  | Door Leaf | 9d | 2014-09-01 A | 2014-09-11 A | 823B-H-WPH-A-1050 FS+214d | 100% |  |  | Labour [6 NO]; Labour [1200 h] |  | 100% | 100% |  |  |  | 823B_AB |  |
|  | 4 | **Builder's Work in Connection with Services** |  | 2013-03-06 | 2013-05-21 |  |  |  |  |  |  |  |  |  |  |  |  |  |
| 823B-H-WPH-B-1000 |  | Lifting eye (8 nos.) | 12d | 2013-03-06 A | 2013-03-19 A | 823B-H-WPH-S-1080 | 100% |  |  |  |  | 100% | 100% |  |  |  | 823B_AB |  |
| 823B-H-WPH-B-2000 |  | Pipe laying (stormwater system) | 20d | 2013-03-06 A | 2013-03-28 A | 823B-H-WPH-B-1000 SS | 100% |  |  |  |  | 100% | 100% |  |  |  | 823B_AB |  |
| 823B-H-WPH-B-3000 |  | Pipe laying (foul water system) | 20d | 2013-04-02 A | 2013-04-25 A | 823B-H-WPH-B-2000 | 100% |  |  |  |  | 100% | 100% |  |  |  | 823B_AB |  |
| 823B-H-WPH-B-4000 |  | Earthing (lighting protection system) | 20d | 2013-04-26 A | 2013-05-21 A | 823B-H-WPH-B-3000 | 100% |  |  |  |  | 100% | 100% |  |  |  | 823B_AB |  |
|  | 6 | **Train Wash Plant** |  | 2014-06-19 | 2015-04-01 |  |  |  |  |  |  |  |  |  |  |  |  |  |
|  | 1 | **Site Formation / Earthwork** |  | 2014-06-19 | 2014-08-01 |  |  |  |  |  |  |  |  |  |  |  |  |  |
| 823B-H-TWP-S-1010 |  | Excavation to formation level (approx +14.00) (780m³) | 6d | 2014-06-19 A | 2014-06-25 A | 823B-CC-A7-RT-1050 | 100% | 2014-06-03 | 2014-06-09 | Labour [192 h]; Operator [48 h]; Labour [4 NO]; Operator [1 NO]; Other - Plant & Equipment [1 NO]; Excavation [780 Cu m]; Other - Plant & Equipment [48 h] | 780 | 100% | 100% | 780 | m3 | 780 | 823B_AB |  |
| 823B-H-TWP-S-1020 |  | Excavation for Footing Foundation (900m³) | 6d | 2014-06-19 A | 2014-06-25 A | 823B-H-TWP-S-1010 SS | 100% | 2014-06-03 | 2014-06-09 | Excavation [900 Cu m]; Labour [4 NO]; Operator [1 NO]; Other - Plant & Equipment [1 NO]; Labour [192 h]; Operator [48 h]; Other - Plant & Equipment [48 h] | 900 | 100% | 100% | 900 | m3 | 900 | 823B_AB |  |
| 823B-H-TWP-S-1040 |  | Footing foundation (46m³ conc) | 12d | 2014-06-26 A | 2014-07-23 A | 823B-H-TWP-S-1020 | 100% | 2014-06-10 | 2014-06-23 | Labour [80 h]; Labour [120 NO]; Rebar [6 t]; Concrete [46 Cu m]; Concrete (Buildings & External) [46 Cu m] | 46 | 100% | 100% | 46 | m3 | 46 | 823B_AB | -17 |
| 823B-H-TWP-S-1030 |  | Excavation for Underground Tank (512m³) | 4d | 2014-07-19 A | 2014-08-01 A | 823B-H-TWP-S-1020 SS+2d | 100% | 2014-07-02 | 2014-07-05 | Excavation [512 Cu m]; Labour [6 NO]; Operator [1 NO]; Other - Plant & Equipment [1 NO]; Labour [192 h]; Operator [32 h]; Other - Plant & Equipment [32 h] | 512 | 100% | 100% | 512 | m3 | 512 | 823B_AB |  |

| ID | WBS | Activity | Duration | Start | Finish | Predecessors | Complete | Planned start | Planned finish | Constraint | Resources | user_text4 | user_text6 | user_text7 | user_integer1 | user_text1 | user_text5 | Time Gain / Loss | 823B_As-built | PRELIM |
| --- | --- | --- | --- | --- | --- | --- | --- | --- | --- | --- | --- | --- | --- | --- | --- | --- | --- | --- | --- | --- |
|  | 2 | **Civil and Structure** |  | 2014-07-17 | 2014-12-06 |  |  |  |  |  |  |  |  |  |  |  |  |  |  |  |
| 823B-H-TWP-S-1050 |  | Column (below ground) (5m³ conc) | 10d | 2014-07-17 A | 2014-07-28 A | 823B-H-TWP-S-1040 | 100% |  |  |  | Concrete [5 Cu m]; Rebar [1 t]; Concrete (Buildings & External) [5 Cu m]; Labour [10 NO]; Labour [800 h] | 5 | 100% | 100% | 5 | m3 | 5 | -17 | 823B_AB |  |
| 823B-H-TWP-S-1060 |  | Backfilling (850m³) | 6d | 2014-07-25 A | 2014-08-27 A | 823B-H-TWP-S-1050 SS+7d | 100% | 2014-07-23 | 2014-07-29 |  | Backfilling [850 Cu m]; Labour [3 NO]; Operator [1 NO]; Other - Plant & Equipment [1 NO]; Labour [144 h]; Operator [48 h] | 850 | 100% | 100% | 850 | m3 | 850 |  | 823B_AB |  |
| 823B-H-TWP-S-1110 |  | Underground tank (144m³ conc) | 30d | 2014-08-04 A | 2014-12-06 A | 823B-H-TWP-S-1030 | 100% | 2014-08-04 | 2014-09-06 |  | Labour [11 NO]; Labour [2640 h]; Concrete [144 Cu m]; Concrete (Buildings & External) [144 Cu m]; Rebar [21 t]; Backfilling [154 Cu m] | 144 | 100% | 100% | 144 | m3 | 144 |  | 823B_AB |  |
| 823B-H-TWP-S-1070 |  | Ground Slab (52m³ conc) | 12d | 2014-08-28 A | 2014-09-01 A | 823B-H-TWP-S-1060 SS+3d | 100% | 2014-08-01 | 2014-08-14 |  | Labour [960 h]; Labour [10 NO]; Rebar [6 t]; Concrete (Buildings & External) [42 Cu m]; Concrete [42 Cu m] | 52 | 100% | 100% | 52 | m3 | 52 |  | 823B_AB |  |
| 823B-H-TWP-S-1080 |  | Column (above ground) (10m³ conc) | 10d | 2014-09-01 A | 2014-09-05 A | 823B-H-TWP-S-1070 | 100% | 2014-09-15 | 2014-09-25 |  | Concrete [10 Cu m]; Concrete (Buildings & External) [10 Cu m]; Rebar [2 t]; Labour [10 NO]; Labour [800 h] | 10 | 100% | 100% | 10 | m3 | 10 |  | 823B_AB |  |
| 823B-H-TWP-S-1100 |  | Non-bearing RC Wall (60m³ conc) | 20d | 2014-09-01 A | 2014-09-05 A | 823B-H-TWP-S-1090 | 100% | 2014-10-27 | 2014-11-18 |  | Labour [2304 h]; Labour [12 NO]; Rebar [9 t]; Concrete (Buildings & External) [60 Cu m]; Concrete [60 Cu m] | 60 | 100% | 100% | 60 | m3 | 60 |  | 823B_AB |  |
| 823B-H-TWP-S-1090 |  | Roof slab (82m³ conc) | 24d | 2014-09-04 A | 2014-09-29 A | 823B-H-TWP-S-1080 | 100% | 2014-09-26 | 2014-10-25 |  | Concrete [82 Cu m]; Concrete (Buildings & External) [82 Cu m]; Rebar [13 t]; Labour [12 NO]; Labour [2304 h] | 82 | 100% | 100% | 82 | m3 | 82 |  | 823B_AB |  |
|  | 3 | **ABWF Works** |  | 2014-10-03 | 2015-04-01 |  |  |  |  |  |  |  |  |  |  |  |  |  |  |  |
| 823B-H-TWP-A-1010 |  | Blockwalls (electrical room) | 6d | 2014-10-03 A | 2014-10-09 A | 823B-H-TWP-S-1100, 823B-PRO-1050 | 100% |  |  |  | Labour [192 h]; Labour [4 NO] |  | 100% | 100% |  |  |  |  | 823B_AB |  |
| 823B-H-TWP-A-1080 |  | Waterproofing (Roof) | 12d | 2014-10-03 A | 2014-10-16 A | 823B-H-TWP-S-1090 | 100% |  |  |  | Labour [6 NO]; Labour [576 h] |  | 100% | 100% |  |  |  |  | 823B_AB |  |
| 823B-H-TWP-A-1020 |  | Catladder & Metal Access Hatch | 6d | 2014-10-10 A | 2014-10-16 A | 823B-H-TWP-A-1010 | 100% |  |  |  | Labour [4 NO]; Labour [192 h] |  | 100% | 100% |  |  |  |  | 823B_AB |  |
| 823B-H-TWP-A-1050 |  | Control Room Finishes (Floor & Skirting) | 6d | 2014-10-10 A | 2014-10-16 A | 823B-H-TWP-A-1010 | 100% |  |  |  | Labour [384 h]; Labour [8 NO] |  | 100% | 100% |  |  |  |  | 823B_AB |  |
| 823B-H-TWP-A-1060 |  | Train Wash Plant Room Finishes (Floor, Skirting, Wall/Column, & Ceiling) | 10d | 2014-10-10 A | 2014-10-21 A | 823B-H-TWP-A-1050 SS | 100% |  |  |  | Labour [8 NO]; Labour [768 h] |  | 100% | 100% |  |  |  |  | 823B_AB |  |
| 823B-H-TWP-A-1070 |  | Electrical Room Finishes (Floor & Skirting) | 6d | 2014-10-15 A | 2014-10-21 A | 823B-H-TWP-A-1050 SS+4d | 100% |  |  |  | Labour [384 h]; Labour [8 NO] |  | 100% | 100% |  |  |  |  | 823B_AB |  |
| 823B-H-TWP-A-1090 |  | Roof Finishing | 30d | 2014-10-17 A | 2014-12-17 A | 823B-H-TWP-A-1080 | 100% | 2014-10-17 | 2014-11-20 |  | Labour [1920 h]; Labour [8 NO] |  | 100% | 100% |  |  |  |  | 823B_AB |  |
| 823B-H-TWP-A-1040 |  | Windows, Louvers, Roller Shutters | 24d | 2014-10-31 A | 2015-02-04 A | 823B-H-TWP-A-1030 | 100% | 2014-10-31 | 2014-11-27 |  | Labour [16 NO]; Labour [3072 h] |  | 100% | 100% |  |  |  |  | 823B_AB |  |
| 823B-H-TWP-A-1030 |  | Doors & Ironmongery | 12d | 2015-01-02 A | 2015-04-01 A | 823B-H-TWP-A-1020 | 100% | 2015-01-02 | 2015-01-15 |  | Labour [288 h]; Labour [3 NO] |  | 100% | 100% |  |  |  |  | 823B_AB |  |
|  | 4 | **Builder's Work in Connection with Services** |  | 2014-09-01 | 2014-09-15 |  |  |  |  |  |  |  |  |  |  |  |  |  |  |  |
| 823B-H-TWP-B-1000 |  | Pipe laying (stormwater system) | 12d | 2014-09-01 A | 2014-09-15 A | 823B-H-TWP-A-1090 SS | 100% | 2014-11-10 | 2014-11-22 |  |  |  | 100% | 100% |  |  |  |  | 823B_AB |  |
| 823B-H-TWP-B-2000 |  | Earthing (lighting protection system) | 12d | 2014-09-01 A | 2014-09-15 A | 823B-H-TWP-B-1000 | 100% | 2014-11-24 | 2014-12-06 |  |  |  | 100% | 100% |  |  |  |  | 823B_AB |  |
|  | J | **STABLING SIDINGS & EXTERNAL WORKS** |  | 2011-02-10 | 2017-02-17 |  |  |  |  |  |  |  |  |  |  |  |  |  |  |  |
|  | 01 | **SITE FORMATION AND EARTHWORKS** |  | 2011-02-10 | 2014-02-22 |  |  |  |  |  |  |  |  |  |  |  |  |  |  |  |
| 823B-SFE-1010 |  | Site formation works and temporary stream diversion | 160d | 2011-02-10 A | 2011-08-24 A | 823B-A-PWS-0270, 823B-A-PWS-0250, 823B-A-PWS-0260, 823B-A-PWS-0770, 823B-A-PWS-0870, 823B-DP004-070, 823B-DP004-210, 823B-DP004-140 | 100% |  |  | start on 2011-02-10 |  |  | 100% | 100% |  |  |  |  | 823B_AB | H002 |
| 823B-SFE-1020 |  | Removal of Temporary stream diversion | 111d | 2012-11-26 A | 2013-04-15 A | 823B-EBC-1550 SS, 823B-EBC-1480 SS, 823B-EBC-1460 SS, 823B-EBC-1290 SS, 823B-EBC-1100 SS, 823B-EBC-1020 SS | 100% |  |  |  |  |  | 100% | 100% |  |  |  |  | 823B_AB | H002 |
| 823B-SFE-1030 |  | Erect chain link fence prior to energisation of track | 26d | 2014-01-24 A | 2014-02-22 A | 823B-RMSA-1240, 823B-RMSA-1290 SS+130d, 823B-F-SMB-A-3150, 823B-H-RSP-2010, 823B-H-SHK-A-1130, 823B-H-SLS-A-1120, 823B-H-TWP-A-1040, 823B-SSS-1010, 823B-SSS-1020, 823B-SSS-1030, 823B-SSS-1040, 823B-STR-1010, 823B-STR-1020, 823B-STR-1030 | 100% | 2013-12-06 | 2014-01-08 |  |  |  | 100% | 100% |  |  |  |  | 823B_AB |  |

| ID | WBS | Activity | Duration | Start | Finish | Predecessors | Complete | Planned start | Planned finish | Resources | user_text6 | user_text7 | PRELIM | 823B_As-built |
| --- | --- | --- | --- | --- | --- | --- | --- | --- | --- | --- | --- | --- | --- | --- |
|  | 02 | **KAM TIN ROAD DIVERSION** |  | 2011-12-01 | 2014-06-30 |  |  |  |  |  |  |  |  |  |
| 823B-KTR-1010 |  | Kam Tin Road Diversion | 170d | 2011-12-01 A | 2012-06-30 A | 823B-SFE-1010 FS+81d, 823B-DP007-070, 823B-DP007-140, 823B-DP007-210, 823B-DP008-070, 823B-DP008-140 | 100% |  |  |  | 100% | 100% | H002 | 823B_AB |
| 823B-KTR-1020 |  | Implementation/Maintain Kam Tin Road Diversion | 395d | 2012-07-03 A | 2014-03-28 A | 823B-KTR-1010 | 100% | 2012-07-03 | 2013-10-29 |  | 100% | 100% |  | 823B_AB |
| 823B-KTR-1030 |  | Stage 3: Reinstatement of Kam Tin Road | 237d | 2012-12-01 A | 2014-03-29 A | 823B-KTR-1020 SS+127d | 100% | 2012-12-01 | 2013-09-19 |  | 100% | 100% |  | 823B_AB |
| 823B-KTR-1040 |  | Stage 3: Reinstatement of Kam Tin Road (on C&C tunnel) | 60d | 2014-01-02 A | 2014-03-28 A | 823B-KTR-1030 SS+177d, 823B-ERS-A1-RT-1030 SS | 100% | 2013-07-12 | 2013-09-19 |  | 100% | 100% |  | 823B_AB |
| 823B-KTR-1050 |  | Changeover existing UU to original alignment of KTR | 1d | 2014-03-29 A | 2014-03-29 A | 823B-KTR-1030, 823B-KTR-1040 | 100% | 2014-03-18 | 2014-03-18 |  | 100% | 100% |  | 823B_AB |
| 823B-KTR-1060 |  | Remove steel deck to release work zone of 823B | 28d | 2014-06-03 A | 2014-06-30 A | 823B-KTR-1050 | 100% | 2014-06-03 | 2014-07-05 |  | 100% | 100% |  | 823B_AB |
|  | 03 | **EAST CULVERT** |  | 2011-04-02 | 2013-08-24 |  |  |  |  |  |  |  |  |  |
| 823B-EBC-1490 |  | Site preparation for East Culvert Construction (CH 1+086 to CH 1+162) | 23d | 2011-04-02 A | 2011-05-04 A | 823B-SFE-1010 SS | 100% |  |  |  | 100% | 100% |  | 823B_AB |
| 823B-EBC-1500 |  | East Culvert CH 1+086 to CH 1+124 (Dka 124+540 to Dka 124+575) | 192d | 2011-05-05 A | 2011-12-21 A | 823B-EBC-1490 | 100% |  |  | Concrete (Buildings & External) [572 Cu m]; Concrete [572 Cu m]; Rebar [168 t]; Box Culvert [39 m]; East Box Culvert [39 m] | 100% | 100% |  | 823B_AB |
| 823B-EBC-1510 |  | East Culvert CH 1+124 to CH 1+162 (Dka 124+575 to Dka 124+610) | 179d | 2011-05-05 A | 2011-12-06 A | 823B-EBC-1500 SS | 100% |  |  | Concrete (Buildings & External) [572 Cu m]; Concrete [572 Cu m]; Rebar [167 t]; Box Culvert [38 m]; East Box Culvert [38 m] | 100% | 100% |  | 823B_AB |
| 823B-EBC-1050 |  | Site preparation for East Culvert Construction (CH 0+0125 to CH 0+0294) | 24d | 2011-07-04 A | 2011-07-30 A | 823B-AC-0030, 823B-AC-0035, 823B-AC-0040, 823B-AC-0045, 823B-AC-0050, 823B-AC-0095, 823B-A-PWS-0510, 823B-A-PWS-0530, 823B-A-PWS-0550, 823B-A-PWS-0950, 823B-DP003-070, 823B-SFE-1010 | 100% |  |  |  | 100% | 100% |  | 823B_AB |
| 823B-EBC-1060 |  | East Culvert CH 0+0125 to CH 0+0167 (Dka 123+580 to Dka 123+625) | 61d | 2011-08-01 A | 2011-10-13 A | 823B-EBC-1050, 823B-DP003-070 | 100% |  |  | Concrete (Buildings & External) [625 Cu m]; Concrete [625 Cu m]; Rebar [183 t]; Box Culvert [42 m]; East Box Culvert [42 m] | 100% | 100% |  | 823B_AB |
| 823B-EBC-1110 |  | Site preparation for East Culvert Construction (CH 0+0294 to CH 0+0418) | 24d | 2011-08-08 A | 2011-09-03 A | 823B-EBC-1050 FS+6d | 100% |  |  |  | 100% | 100% |  | 823B_AB |
| 823B-EBC-1150 |  | Site preparation for East Culvert Construction (CH 0+0418 to CH 0+0524) | 24d | 2011-09-02 A | 2011-09-30 A | 823B-EBC-1110 FS-2d | 100% |  |  |  | 100% | 100% |  | 823B_AB |
| 823B-EBC-1120 |  | East Culvert CH 0+0294 to CH 0+0336 (Dka 123+760 to Dka 123+800) | 47d | 2011-09-05 A | 2011-11-01 A | 823B-EBC-1110 | 100% |  |  | Concrete (Buildings & External) [607 Cu m]; Concrete [607 Cu m]; Rebar [178 t]; Box Culvert [41 m]; East Box Culvert [41 m] | 100% | 100% |  | 823B_AB |
| 823B-EBC-1180 |  | Site preparation for East Culvert Construction (CH 0+0524 to CH 0+0619) | 24d | 2011-09-16 A | 2011-10-15 A | 823B-EBC-1150 SS+11d | 100% |  |  |  | 100% | 100% |  | 823B_AB |
| 823B-EBC-1160 |  | East Culvert CH 0+0418 to CH 0+0471 (Dka 123+880 to Dka 123+930) | 75d | 2011-10-03 A | 2011-12-31 A | 823B-EBC-1150 | 100% |  |  | Concrete (Buildings & External) [801 Cu m]; Concrete [801 Cu m]; Rebar [234 t]; Box Culvert [43 m]; East Box Culvert [43 m] | 100% | 100% |  | 823B_AB |
| 823B-EBC-1070 |  | East Culvert CH 0+0167 to CH 0+0209 (Dka 123+625 to Dka 123+670) | 61d | 2011-10-14 A | 2011-12-23 A | 823B-EBC-1060 | 100% |  |  | Concrete (Buildings & External) [624 Cu m]; Concrete [624 Cu m]; Rebar [182 t]; Box Culvert [42 m]; East Box Culvert [42 m] | 100% | 100% |  | 823B_AB |
| 823B-EBC-1190 |  | East Culvert CH 0+0524 to CH 0+0557 (Dka 123+980 to Dka 124+014) | 163d | 2011-10-17 A | 2012-05-05 A | 823B-EBC-1180 | 100% |  |  | Concrete (Buildings & External) [465 Cu m]; Concrete [465 Cu m]; Rebar [136 t]; Box Culvert [40 m]; East Box Culvert [40 m] | 100% | 100% |  | 823B_AB |
| 823B-EBC-1220 |  | Site preparation for East Culvert Construction (CH 0+0619 to CH 0+0718) | 24d | 2011-10-17 A | 2011-11-12 A | 823B-EBC-1180 | 100% |  |  |  | 100% | 100% |  | 823B_AB |
| 823B-EBC-1130 |  | East Culvert CH 0+0336 to CH 0+0377 (Dka 123+800 to Dka 123+840) | 55d | 2011-11-02 A | 2012-01-07 A | 823B-EBC-1120 | 100% |  |  | Concrete (Buildings & External) [607 Cu m]; Concrete [607 Cu m]; Rebar [178 t]; Box Culvert [41 m]; East Box Culvert [41 m] | 100% | 100% |  | 823B_AB |
| 823B-EBC-1230 |  | East Culvert CH 0+0619 to CH 0+0669 (Dka 124+080 to Dka 124+130) | 202d | 2011-12-17 A | 2012-08-24 A | 823B-EBC-1220 | 100% |  |  | Concrete (Buildings & External) [737 Cu m]; Concrete [737 Cu m]; Rebar [215 t]; Box Culvert [50 m]; East Box Culvert [50 m] | 100% | 100% |  | 823B_AB |
| 823B-EBC-1200 |  | East Culvert CH 0+0557 to CH 0+0588 (Dka 124+014 to Dka 124+047) | 125d | 2011-12-19 A | 2012-05-24 A | 823B-EBC-1190 SS | 100% |  |  | Concrete (Buildings & External) [465 Cu m]; Concrete [465 Cu m]; Rebar [136 t]; Box Culvert [38 m]; East Box Culvert [38 m] | 100% | 100% |  | 823B_AB |
| 823B-EBC-1080 |  | East Culvert CH 0+0209 to CH 0+0251 (Dka 123+670 to Dka 123+715) | 61d | 2011-12-24 A | 2012-03-10 A | 823B-EBC-1070 | 100% |  |  | Concrete (Buildings & External) [624 Cu m]; Concrete [624 Cu m]; Rebar [182 t]; Box Culvert [42 m]; East Box Culvert [42 m] | 100% | 100% |  | 823B_AB |
| 823B-EBC-1170 |  | East Culvert CH 0+0471 to CH 0+0524 (Dka 123+930 to Dka 123+980) | 74d | 2012-01-03 A | 2012-03-31 A | 823B-EBC-1160 | 100% |  |  | Concrete (Buildings & External) [800 Cu m]; Concrete [800 Cu m]; Rebar [234 t]; Box Culvert [43 m]; East Box Culvert [43 m] | 100% | 100% |  | 823B_AB |
| 823B-EBC-1140 |  | East Culvert CH 0+0377 to CH 0+0418 (Dka 123+840 to Dka 123+880) | 45d | 2012-01-09 A | 2012-03-03 A | 823B-EBC-1130 | 100% |  |  | Concrete (Buildings & External) [606 Cu m]; Concrete [606 Cu m]; Rebar [177 t]; Box Culvert [41 m]; East Box Culvert [41 m] | 100% | 100% |  | 823B_AB |
| 823B-EBC-1270 |  | Site preparation for East Culvert Construction (CH 0+0718 to CH 0+0818) | 24d | 2012-02-06 A | 2012-03-03 A | 823B-EBC-1230 SS | 100% |  |  |  | 100% | 100% |  | 823B_AB |
| 823B-EBC-1440 |  | Site preparation for East Culvert Construction (CH 0+979 to CH 1+086) | 24d | 2012-02-06 A | 2012-03-03 A | 823B-EBC-1270 SS | 100% |  |  |  | 100% | 100% |  | 823B_AB |
| 823B-EBC-1250 |  | East Culvert CH 0+0669 to CH 0+0718 (Dka 124+130 to Dka 124+180) | 213d | 2012-02-07 A | 2012-10-24 A | 823B-EBC-1230 SS | 100% |  |  | Concrete (Buildings & External) [736 Cu m]; Concrete [736 Cu m]; Rebar [215 t]; Box Culvert [50 m]; East Box Culvert [50 m] | 100% | 100% |  | 823B_AB |
| 823B-EBC-1210 |  | East Culvert CH 0+0588 to CH 0+0619 (Dka 124+047 to Dka 124+080) | 78d | 2012-02-24 A | 2012-05-31 A | 823B-EBC-1200 SS | 100% |  |  | Concrete (Buildings & External) [465 Cu m]; Concrete [465 Cu m]; Rebar [135 t]; Box Culvert [38 m]; East Box Culvert [38 m] | 100% | 100% |  | 823B_AB |
| 823B-EBC-1000 |  | Site preparation for East Culvert Construction (CH 0+058 to CH 0+125) | 24d | 2012-03-05 A | 2012-03-31 A | 823B-EBC-1270 | 100% |  |  |  | 100% | 100% |  | 823B_AB |
| 823B-EBC-1280 |  | East Culvert CH 0+0718 to CH 0+0754 (Dka 124+180 to Dka 124+216) | 207d | 2012-03-05 A | 2012-11-13 A | 823B-EBC-1270 | 100% |  |  | Concrete (Buildings & External) [494 Cu m]; Concrete [494 Cu m]; Rebar [144 t]; Box Culvert [36 m]; East Box Culvert [36 m] | 100% | 100% |  | 823B_AB |
| 823B-EBC-1390 |  | Site preparation for East Culvert Construction (CH 0+0881 to CH 0+0979) | 24d | 2012-03-05 A | 2012-03-31 A | 823B-EBC-1000 SS | 100% |  |  |  | 100% | 100% |  | 823B_AB |
| 823B-EBC-1450 |  | East Culvert CH 0+979 to CH 1+033 (Dka 124+440 to Dka 124+490) | 100d | 2012-03-05 A | 2012-07-07 A | 823B-EBC-1440 | 100% |  |  | Concrete (Buildings & External) [795 Cu m]; Concrete [795 Cu m]; Rebar [233 t]; Box Culvert [54 m]; East Box Culvert [54 m] | 100% | 100% |  | 823B_AB |
| 823B-EBC-1530 |  | Site preparation for East Culvert Construction (CH 1+162 to CH 1+288) | 24d | 2012-03-05 A | 2012-03-31 A | 823B-EBC-1000 SS | 100% |  |  |  | 100% | 100% |  | 823B_AB |
| 823B-EBC-1090 |  | East Culvert CH 0+0251 to CH 0+0294 (Dka 123+715 to Dka 123+760) | 101d | 2012-03-12 A | 2012-07-16 A | 823B-EBC-1080 | 100% |  |  | Concrete (Buildings & External) [624 Cu m]; Concrete [624 Cu m]; Rebar [182 t]; Box Culvert [42 m]; East Box Culvert [42 m] | 100% | 100% |  | 823B_AB |
| 823B-EBC-1010 |  | East Culvert CH 0+058 to CH 0+125 (Dka 123+520 to Dka 123+580) | 149d | 2012-04-02 A | 2012-10-03 A | 823B-EBC-1000 | 100% |  |  | Concrete (Buildings & External) [683 Cu m]; Concrete [683 Cu m]; Rebar [200 t]; Box Culvert [46 m]; East Box Culvert [46 m] | 100% | 100% |  | 823B_AB |
| 823B-EBC-1400 |  | East Culvert CH 0+0881 to CH 0+0930 (Dka 124+340 to Dka 124+390) | 12d | 2012-04-02 A | 2012-04-19 A | 823B-EBC-1390 | 100% |  |  | Concrete (Buildings & External) [727 Cu m]; Concrete [727 Cu m]; Rebar [213 t]; Box Culvert [49 m]; East Box Culvert [49 m] | 100% | 100% |  | 823B_AB |
| 823B-EBC-1540 |  | East Culvert CH 1+162 to CH 1+225 (Dka 124+610 to Dka 124+685) | 171d | 2012-04-02 A | 2012-10-30 A | 823B-EBC-1530 | 100% |  |  | Concrete (Buildings & External) [927 Cu m]; Concrete [927 Cu m]; Rebar [273 t]; Box Culvert [63 m]; East Box Culvert [63 m] | 100% | 100% |  | 823B_AB |
| 823B-EBC-1560 |  | East Culvert CH 1+225 to CH 1+288 (Dka 124+685 to Dka 124+760) | 150d | 2012-04-02 A | 2012-10-04 A | 823B-EBC-1540 SS | 100% |  |  | Concrete (Buildings & External) [926 Cu m]; Concrete [926 Cu m]; Rebar [273 t]; Box Culvert [62 m]; East Box Culvert [62 m] | 100% | 100% |  | 823B_AB |
| 823B-EBC-1420 |  | East Culvert CH 0+0930 to CH 0+0979 (Dka 124+390 to Dka 124+440) | 43d | 2012-04-20 A | 2012-06-11 A | 823B-EBC-1400 SS | 100% |  |  | Concrete (Buildings & External) [727 Cu m]; Concrete [727 Cu m]; Rebar [212 t]; Box Culvert [49 m]; East Box Culvert [49 m] | 100% | 100% |  | 823B_AB |
| 823B-EBC-1470 |  | East Culvert CH 1+033 to CH 1+086 (Dka 124+490 to Dka 124+540) | 142d | 2012-05-18 A | 2012-11-06 A | 823B-EBC-1450 SS | 100% |  |  | Concrete (Buildings & External) [794 Cu m]; Concrete [794 Cu m]; Rebar [233 t]; Box Culvert [53 m]; East Box Culvert [53 m] | 100% | 100% |  | 823B_AB |
| 823B-EBC-1300 |  | East Culvert CH 0+0754 to CH 0+0786 (Dka 124+216 to Dka 124+248) | 133d | 2012-05-19 A | 2012-10-27 A | 823B-EBC-1280 SS | 100% |  |  | Concrete (Buildings & External) [493 Cu m]; Concrete [493 Cu m]; Rebar [144 t]; Box Culvert [32 m]; East Box Culvert [32 m] | 100% | 100% |  | 823B_AB |
| 823B-EBC-1320 |  | East Culvert CH 0+0786 to CH 0+0818 (Dka 124+248 to Dka 124+280) | 131d | 2012-06-01 A | 2012-11-06 A | 823B-EBC-1300 SS | 100% |  |  | Concrete (Buildings & External) [493 Cu m]; Concrete [493 Cu m]; Rebar [144 t]; Box Culvert [32 m]; East Box Culvert [32 m] | 100% | 100% |  | 823B_AB |
| 823B-EBC-1340 |  | Site preparation for East Culvert Construction (CH 0+0818 to CH 0+0881) | 23d | 2012-06-04 A | 2012-06-30 A | 823B-EBC-1000 FS-4d | 100% |  |  |  | 100% | 100% |  | 823B_AB |
| 823B-EBC-1350 |  | East Culvert CH 0+0818 to CH 0+0850 (Dka 124+280 to Dka 124+330) | 115d | 2012-07-03 A | 2012-11-16 A | 823B-EBC-1340 | 100% |  |  | Concrete (Buildings & External) [463 Cu m]; Concrete [463 Cu m]; Rebar [135 t]; Box Culvert [31 m]; East Box Culvert [31 m] | 100% | 100% |  | 823B_AB |
| 823B-EBC-1460 |  | East Culvert CH 0+979 to CH 1+033 (Dka 124+440 to Dka 124+490) - Remaining works | 117d | 2012-07-16 A | 2012-12-01 A | 823B-EBC-1450 | 100% |  |  |  | 100% | 100% |  | 823B_AB |
| 823B-EBC-1370 |  | East Culvert CH 0+0850 to CH 0+0881 (Dka 124+310 to Dka 124+340) | 95d | 2012-07-24 A | 2012-11-14 A | 823B-EBC-1350 SS | 100% |  |  | Concrete (Buildings & External) [462 Cu m]; Concrete [462 Cu m]; Rebar [135 t]; Box Culvert [31 m]; East Box Culvert [31 m] | 100% | 100% |  | 823B_AB |
| 823B-EBC-1030 |  | Site preparation for East Culvert Construction (CH 0+035 to CH 0+080) | 30d | 2012-08-06 A | 2012-09-08 A | 823B-EBC-1340, 823B-EBC-1350 SS | 100% |  |  |  | 100% | 100% |  | 823B_AB |
| 823B-EBC-1020 |  | East Culvert CH 0+058 to CH 0+125 (Dka 123+520 to Dka 123+580) - Remaining works | 82d | 2012-10-04 A | 2012-12-24 A | 823B-EBC-1010 | 100% | 2012-12-01 | 2013-03-13 |  | 100% | 100% |  | 823B_AB |
| 823B-EBC-1100 |  | East Culvert CH 0+0251 to CH 0+0294 (Dka 123+715 to Dka 123+760) - Remaining Woks | 48d | 2012-10-08 A | 2012-12-03 A | 823B-EBC-1090 | 100% | 2012-12-01 | 2013-01-29 |  | 100% | 100% |  | 823B_AB |
| 823B-EBC-1520 |  | East Culvert CH 1+086 to CH 1+162 (Dka 124+540 to Dka 124+610) - Remaining works | 48d | 2012-10-08 A | 2012-12-03 A | 823B-EBC-1510, 823B-EBC-1480 | 100% | 2012-12-27 | 2013-02-25 |  | 100% | 100% |  | 823B_AB |
| 823B-EBC-1570 |  | East Culvert CH 1+225 to CH 1+288 (Dka 124+685 to Dka 124+760) - Remainin works | 48d | 2012-11-02 A | 2012-12-29 A | 823B-EBC-1560, 823B-EBC-1550 FF | 100% | 2013-01-02 | 2013-03-01 |  | 100% | 100% |  | 823B_AB |
| 823B-EBC-1480 |  | East Culvert CH 1+033 to CH 1+086 (Dka 124+490 to Dka 124+540) - Remaining works | 42d | 2012-11-06 A | 2013-02-02 A | 823B-EBC-1470 | 100% | 2012-11-06 | 2012-12-24 |  | 100% | 100% |  | 823B_AB |
| 823B-EBC-1550 |  | East Culvert CH 1+162 to CH 1+225 (Dka 124+610 to Dka 124+685) - Remaining works | 72d | 2012-11-08 A | 2013-02-02 A | 823B-EBC-1540 | 100% | 2012-12-01 | 2013-03-01 |  | 100% | 100% |  | 823B_AB |
| 823B-EBC-1410 |  | East Culvert CH 0+0881 to CH 0+0930 (Dka 124+340 to Dka 124+390) - structure works | 91d | 2012-11-13 A | 2013-03-05 A | 823B-EBC-1400 | 100% | 2012-12-01 | 2013-03-23 |  | 100% | 100% |  | 823B_AB |
| 823B-EBC-1240 |  | East Culvert CH 0+0619 to CH 0+0669 (Dka 124+080 to Dka 124+130) - Remaining works | 21d | 2012-11-19 A | 2012-12-12 A | 823B-EBC-1230, 823B-EBC-1100 | 100% | 2013-01-30 | 2013-02-26 |  | 100% | 100% |  | 823B_AB |
| 823B-EBC-1435 |  | East Culvert CH 0+0930 to CH 0+0979 (Dka 124+390 to Dka 124+440) - Remaining works | 84d | 2012-12-13 A | 2013-03-27 A | 823B-EBC-1410 FF, 823B-EBC-1460 | 100% | 2012-12-10 | 2013-03-23 |  | 100% | 100% |  | 823B_AB |
| 823B-EBC-1310 |  | East Culvert CH 0+0754 to CH 0+0786 (Dka 124+216 to Dka 124+248) - Remaining works | 48d | 2013-01-17 A | 2013-03-16 A | 823B-EBC-1300, 823B-EBC-1290 | 100% | 2012-12-22 | 2013-02-22 |  | 100% | 100% |  | 823B_AB |
| 823B-EBC-1040 |  | East Culvert CH 0+058 to CH 0+080 | 56d | 2013-01-19 A | 2013-03-28 A | 823B-EBC-1030, 823B-EBC-1020 SS+30d | 100% | 2013-01-09 | 2013-03-18 | Concrete (Buildings & External) [164 Cu m]; Concrete [164 Cu m]; Rebar [48 t]; Box Culvert [11 m]; East Box Culvert [11 m] | 100% | 100% |  | 823B_AB |
| 823B-EBC-1380 |  | East Culvert CH 0+0850 to CH 0+0881 (Dka 124+310 to Dka 124+340) - Remaining works | 48d | 2013-01-26 A | 2013-03-26 A | 823B-EBC-1370, 823B-EBC-1360 | 100% | 2013-01-23 | 2013-03-22 |  | 100% | 100% |  | 823B_AB |
| 823B-EBC-1260 |  | East Culvert CH 0+0669 to CH 0+0718 (Dka 124+130 to Dka 124+180) - Remaining works | 21d | 2013-02-09 A | 2013-03-08 A | 823B-EBC-1250, 823B-EBC-1240 | 100% | 2013-02-27 | 2013-03-22 |  | 100% | 100% |  | 823B_AB |
| 823B-EBC-1360 |  | East Culvert CH 0+0818 to CH 0+0850 (Dka 124+280 to Dka 124+330) - Remaining works | 24d | 2013-02-14 A | 2013-03-13 A | 823B-EBC-1350, 823B-EBC-1290 | 100% | 2012-12-22 | 2013-01-22 |  | 100% | 100% |  | 823B_AB |
| 823B-EBC-1290 |  | East Culvert CH 0+0718 to CH 0+0754 (Dka 124+180 to Dka 124+216) - Remaining works | 18d | 2013-02-15 A | 2013-03-07 A | 823B-EBC-1280 | 100% | 2012-12-01 | 2012-12-21 |  | 100% | 100% |  | 823B_AB |
| 823B-EBC-1330 |  | East Culvert CH 0+0786 to CH 0+0818 (Dka 124+248 to Dka 124+280) - Remaining works | 12d | 2013-03-13 A | 2013-03-26 A | 823B-EBC-1320, 823B-EBC-1310 | 100% | 2013-02-23 | 2013-03-08 |  | 100% | 100% |  | 823B_AB |
| 823B-EBC-1580 |  | FMRS / Guaging Stations at Shek Kong Stream | 24d | 2013-07-29 A | 2013-08-24 A | 823B-EBC-1010 FF, 823B-EBC-1090 FF, 823B-EBC-1140 FF, 823B-EBC-1170 FF, 823B-EBC-1210 FF, 823B-EBC-1250 FF, 823B-EBC-1320 FF, 823B-EBC-1370 FF, 823B-EBC-1420 FF, 823B-EBC-1470 FF, 823B-EBC-1510 FF, 823B-EBC-1560 FF, 823B-EBC-1020 FF, 823B-EBC-1100 FF, 823B-EBC-1435 FF | 100% | 2013-02-25 | 2013-03-23 |  | 100% | 100% |  | 823B_AB |

Notes:
- 823B-EBC-1500: Notes: Bay 93 to 96 complete
- 823B-EBC-1510: Notes: Bay 97 to 99 / complete
- 823B-EBC-1450: Notes: Bay 83 to 87 Base slab
- 823B-EBC-1010: Notes: Bay 8 to 10 structure / complete
- 823B-EBC-1400: Notes: Sheetpiling works
- 823B-EBC-1540: Notes: Bay 100 to 103 complete
- 823B-EBC-1560: Notes: Bay 105 to 110 complete
- 823B-EBC-1420: Notes: Bay 82
- 823B-EBC-1470: Notes: Bay 88, 89, 91, 92 / complete
- 823B-EBC-1460: Notes: Bay 83 to 87 Wall & Roof up to / backfilling
- 823B-EBC-1020: Notes: Bay 7 / Backfilling and removal of sheetpile (from Bay 7 to 10)
- 823B-EBC-1100: Notes: Backfilling and sheetpile / removal
- 823B-EBC-1520: Notes: Bay 93 to 99 Backfilling and removal / of sheetpile
- 823B-EBC-1570: Notes: Backfilling and removal of sheetpiles
- 823B-EBC-1480: Notes: Bay 90 Wall & Roof; Bay 88 to 92 / Backfilling and sheetpiling removal
- 823B-EBC-1550: Notes: Bay 104 structure; Bay 100 to 104 / Backfilling and sheetpiling removal
- 823B-EBC-1410: Notes: Bay 74 to 78 from excavation up to / backfilling
- 823B-EBC-1240: Notes: Backfilling and sheetpile / removal
- 823B-EBC-1435: Notes: Bay 79 to 81 from excavation to / backfilling
- 823B-EBC-1310: Notes: Bay 64 roof ; Backfilling and / sheetpiling removal
- 823B-EBC-1040: Notes: Bay 5 & 6
- 823B-EBC-1380: Notes: Bay 73 Base slab; Bay 71 to 73 roof; / Backfilling and sheetpile removal
- 823B-EBC-1260: Notes: Backfilling and sheetpile / removal
- 823B-EBC-1360: Notes: Bay 70 roof; Backfilling and / sheetpile removal
- 823B-EBC-1290: Notes: Backfilling and sheetpile / removal
- 823B-EBC-1330: Notes: Backfilling and sheetpile / removal

| ID | WBS | Activity | Duration | Start | Finish | Predecessors | Complete | Remaining | Planned start | Planned finish | Total float | Free float | Resources | user_text6 | user_text7 | PRELIM | 823B_As-built | user_text2 | Time Gain / Loss | user_start_date1 |
| --- | --- | --- | --- | --- | --- | --- | --- | --- | --- | --- | --- | --- | --- | --- | --- | --- | --- | --- | --- | --- |
|  | 04 | **WEST CULVERT** |  | 2011-07-04 | 2013-08-31 |  |  |  |  |  |  |  |  |  |  |  |  |  |  |  |
| 823B-WBC-1010 |  | West culvert | 373d | 2011-07-04 A | 2012-09-29 A | 823B-SFE-1010 SS+115d, 823B-DP003-140 | 100% |  |  |  |  |  | Concrete [3430 Cu m] | 100% | 100% | H002 | 823B_AB |  |  |  |
| 823B-WBC-1020 |  | FMRS / Guaging Stations | 6d | 2013-08-26 A | 2013-08-31 A | 823B-WBC-1010, 823B-EBC-1580 | 100% |  | 2013-03-25 | 2013-04-03 |  |  |  | 100% | 100% |  | 823B_AB |  |  |  |
|  | 05 | **WATERMAIN DIVERSION** |  | 2011-05-13 | 2012-03-08 |  |  |  |  |  |  |  |  |  |  |  |  |  |  |  |
| 823B-WMD-1010 |  | Watermain diversion | 247d | 2011-05-13 A | 2012-03-08 A | 823B-CC-A10-DW-1010 SS+33d, 823B-DP005-070, 823B-DP005-140, 823B-DP013-070 | 100% |  |  |  |  |  |  | 100% | 100% | H002 | 823B_AB |  |  |  |
|  | 06 | **ROADWORKS & LANDSCAPING** |  | 2013-01-09 | 2017-02-17 |  |  |  |  |  |  |  |  |  |  |  |  |  |  |  |
| 823B-RDW-1060 |  | Access Road & Drain (part of 1st & 4th Avenue up to Kam Sheung Road; DSD Access Road) (CH124+540 to CH125+020) | 78d | 2013-01-09 A | 2013-04-17 A | 823B-EBC-1010, 823B-EBC-1040 SS, 823B-EBC-1090, 823B-EBC-1140, 823B-EBC-1170, 823B-EBC-1210 SS, 823B-EBC-1250 SS, 823B-EBC-1320 SS, 823B-EBC-1370 SS, 823B-EBC-1420 SS, 823B-EBC-1470, 823B-EBC-1510, 823B-EBC-1020 SS, 823B-EBC-1100 SS | 100% |  |  |  |  |  |  | 100% | 100% | H002 | 823B_AB |  |  |  |
| 823B-RDW-1010 |  | Duct & Drain (Main Entrance, 1st & 2nd Avenue Road) (CH123+560 to CH124+540) | 60d | 2013-01-14 A | 2013-03-27 A | 823B-WBC-1010, 823B-A-PWS-0870, 823B-J-SPS-1030 SS+16d | 100% |  |  |  |  |  |  | 100% | 100% | H002 | 823B_AB |  |  |  |
| 823B-RDW-1015 |  | Duct & Drain (Main Entrance, 1st & 2nd Avenue Road) (CH123+560 to CH124+540) (cont.) | 59d | 2013-03-28 A | 2013-06-11 A | 823B-RDW-1010 | 100% |  |  |  |  |  |  | 100% | 100% |  | 823B_AB |  |  |  |
| 823B-RDW-1065 |  | Access Road & Drain (part of 1st & 4th Avenue up to Kam Sheung Road; DSD Access Road) (CH124+540 to CH125+020) (cont.) | 78d | 2013-04-18 A | 2015-12-14 A | 823B-RDW-1060 | 100% |  | 2013-04-18 | 2013-07-22 |  |  |  | 100% | 100% |  | 823B_AB |  |  |  |
| 823B-RDW-1020 |  | Duct & Drain (Main Entrance, 1st & 2nd Avenue Road) (CH123+560 to CH124+540) (cont.) | 60d | 2013-06-13 A | 2013-08-22 A | 823B-RDW-1010, 823B-J-SHT-1090, 823B-J-SPS-1090, 823B-J-SPS-1100, 823B-RDW-1015 | 100% |  |  |  |  |  |  | 100% | 100% |  | 823B_AB |  |  |  |
| 823B-RDW-1025 |  | Duct & Drain (Main Entrance, 1st & 2nd Avenue Road) (CH123+560 to CH124+540) (remaining) | 60d | 2013-08-23 A | 2015-03-07 A | 823B-RDW-1020 | 100% |  | 2013-08-23 | 2013-11-04 |  |  |  | 100% | 100% |  | 823B_AB |  |  |  |
| 823B-RDW-1040 |  | Roadworks and Miscellaneaous works (at Feeder Station Area) | 50d | 2013-08-31 A | 2013-10-31 A | 823B-RDW-1025 | 100% |  | 2013-11-05 | 2014-01-04 |  |  |  | 100% | 100% |  | 823B_AB |  |  |  |
| 823B-RDW-1030 |  | Duct & Drain (3rd & 4th Avenue Road) (CH123+560 to CH124+400) | 63d | 2014-08-01 A | 2015-03-18 A | 823B-KTR-1020, 823B-KTR-1060, 823B-RDW-1025 | 100% |  | 2014-08-15 | 2014-10-30 |  |  |  | 100% | 100% | H002 | 823B_AB |  |  |  |
| 823B-RDW-1035 |  | Duct & Drain (3rd & 4th Avenue Road) (CH123+560 to CH124+400) (remaining) | 62d | 2014-08-01 A | 2015-03-28 A | 823B-RDW-1030 | 100% |  | 2014-10-31 | 2015-01-14 |  |  |  | 100% | 100% |  | 823B_AB |  |  |  |
| 823B-RDW-1050 |  | Roadworks and Miscellaneaous works | 71d | 2014-08-01 A | 2014-12-27 A | 823B-RDW-1030, 823B-RWS-1010, 823B-RWS-1020, 823B-RWS-1050, 823B-RWS-1030, 823B-RDW-1035 | 100% |  | 2015-02-12 | 2015-05-14 |  |  |  | 100% | 100% | H002 | 823B_AB |  |  |  |
| 823B-RDW-1055 |  | Roadworks and Miscellaneaous works (remaining) | 70d | 2014-12-29 A | 2015-11-09 A | 823B-RDW-1050 | 100% |  | 2015-03-26 | 2015-06-23 |  |  |  | 100% | 100% |  | 823B_AB |  |  |  |
| 823B-RDW-1070 |  | Landscaping, Establishment and Reinstatement Works (CH123+500 to CH124+000) (TOA at WA 4.17A) | 60d | 2015-05-02 A | 2015-12-10 A | 823B-RDW-1050 SS | 100% |  | 2015-05-02 | 2015-07-14 |  |  |  | 100% | 100% | H002 | 823B_AB |  |  |  |
| 823B-RDW-1075 |  | Landscaping, Establishment and Reinstatement Works (CH123+500 to CH124+000) (TOA at WA 4.17B) (remaining) | 60d | 2015-05-02 A | 2015-12-21 A | 823B-RDW-1070 | 100% |  | 2015-07-15 | 2015-09-22 |  |  |  | 100% | 100% |  | 823B_AB |  |  |  |
| 823B-RDW-1080 |  | Landscaping, Establishment and Reinstatement Works (CH124+000 to CH125+000) (TOA at WA 4.18B) | 67d | 2015-05-02 A | 2016-01-05 A | 823B-RDW-1075 | 100% |  | 2015-09-23 | 2015-12-12 |  |  |  | 100% | 100% |  | 823B_AB |  |  |  |
| 823B-RDW-1085 |  | Landscaping, Establishment and Reinstatement Works (CH124+000 to CH125+000) (TOA at WA 4.21A) (cont) | 67d | 2015-05-02 A | 2016-01-09 A | 823B-RDW-1080 | 100% |  | 2015-12-14 | 2016-03-02 |  |  |  | 100% | 100% |  | 823B_AB |  |  |  |
| 823B-RDW-1067 |  | Access Road & Drain (part of 1st & 4th Avenue up to Kam Sheung Road;DSD Access Road) (CH124+540 to CH125+020)(remaining) | 77d | 2016-01-02 A | 2016-10-18 | 823B-RDW-1065 | 81% | 15d | 2016-01-01 | 2016-03-30 | 104d | 0d |  | 100% | 80% |  | 823B_AB | 14.8 | 7 |  |
| 823B-RDW-1087 |  | Landscaping, Establishment and Reinstatement Works (CH124+000 to CH125+000) (remaining) | 66d | 2016-02-01 A | 2016-10-31 | 823B-RDW-1085 | 61% | 26d | 2016-02-01 | 2016-04-16 | -455d | 0d |  | 100% | 60% |  | 823B_AB | -65.0 | -19 |  |
| 823B-RDW-1090 |  | DSD Access Road with in Works Area 4.19A, 4.19B and 4.19C (CH123+560 to CH123+760) | 76d | 2016-05-03 A | 2016-05-03 A | 823B-AC-0240, 823B-AC-0245, 823B-AC-0250, 823B-AC-0255, 823B-AC-0260, 823B-AC-0265, 823B-AC-0270 | 100% |  | 2016-05-02 | 2016-07-28 |  |  |  | 100% | 100% | H002 | 823B_AB |  |  |  |
| 823B-RDW-1095 |  | DSD Access Road with in Works Area 4.19A, 4.19B and 4.19C (CH123+560 to CH123+760) (remaining) | 75d | 2016-05-03 A | 2016-05-03 A | 823B-RDW-1090 | 100% |  | 2016-07-29 | 2016-10-24 |  |  |  | 100% | 100% |  | 823B_AB |  |  |  |
| 823B-RDW-1100 |  | Reinstate TOA (WA 4.8, 4.8A, 4.8E, 4.18D & 4.23E) prior to handover | 47d | 2016-11-01 | 2016-12-24 | 823B-CD-30, 823B-RDW-1087 |  |  |  |  | -455d | 0d |  | 100% | 0% |  | 823B_AB | -65.0 | -19 | 2016-11-01 |
| 823B-RDW-1105 |  | Reinstate TOA (WA 4.8, 4.8A, 4.8E, 4.18D & 4.23E) prior to handover - remaining | 46d | 2016-12-27 | 2017-02-17 | 823B-RDW-1100 |  |  |  |  | -455d | 0d |  | 100% | 0% |  | 823B_AB | -65.0 | -19 | 2016-12-27 |

| ID | WBS | Activity | Duration | Start | Finish | Predecessors | Complete | Planned start | Planned finish | Resources | user_text6 | user_text7 | PRELIM | 823B_As-built |
| --- | --- | --- | --- | --- | --- | --- | --- | --- | --- | --- | --- | --- | --- | --- |
|  | 07 | **RIVER HABITAT** |  | 2015-03-02 | 2016-09-19 |  |  |  |  |  |  |  |  |  |
| 823B-RHW-1010 |  | Complete works area preparation | 18d | 2015-03-02 A | 2015-03-21 A | 823B-A-TWS-0760, 823B-A-PWS-0870, 823B-NB9-G-1040 | 100% |  |  |  | 100% | 100% | H002 | 823B_AB |
|  | 1 | **from CH 0+609 to CH 0+300** |  | 2015-03-02 | 2016-09-19 |  |  |  |  |  |  |  |  |  |
| 823B-RHW-2010 |  | Temporarily plugged off twin Ø900 outlet drainage pipe upstream | 12d | 2015-03-02 A | 2015-03-14 A | 823B-A-PWS-0870, 823B-A-TWS-0760, 823B-NB9-G-1040, 823B-RHW-1010 | 100% | 2015-03-23 | 2015-04-09 |  | 100% | 100% |  | 823B_AB |
| 823B-RHW-2020 |  | Cut the existing ground to formation level | 48d | 2015-03-16 A | 2015-06-10 A | 823B-RHW-2010 | 100% | 2015-04-10 | 2015-06-06 |  | 100% | 100% |  | 823B_AB |
| 823B-RHW-2030 |  | Upstream - rock fill slope & rip-rap base construction | 80d | 2015-12-01 A | 2016-09-19 A | 823B-RHW-2020 | 100% | 2015-06-08 | 2015-09-10 |  | 100% | 100% |  | 823B_AB |
|  | 2 | **from CH 0+300 to CH 0+180** |  | 2015-04-01 | 2015-10-08 |  |  |  |  |  |  |  |  |  |
| 823B-RHW-3010 |  | Temporarily close inlet of West Culvert upstream | 12d | 2015-04-01 A | 2015-04-11 A | 823B-RHW-2010, 823B-RHW-2020 | 100% | 2015-04-16 | 2015-04-29 |  | 100% | 100% |  | 823B_AB |
| 823B-RHW-3020 |  | Cut the existing ground to formation level | 22d | 2015-04-13 A | 2015-04-30 A | 823B-RHW-3010 | 100% | 2015-04-30 | 2015-05-27 |  | 100% | 100% |  | 823B_AB |
| 823B-RHW-3030 |  | Upstream - rock fill slope & rip-rap base construction | 48d | 2015-04-20 A | 2015-10-08 A | 823B-RHW-3020 | 100% | 2015-05-28 | 2015-07-24 |  | 100% | 100% |  | 823B_AB |
|  | 3 | **from CH 0+180 to CH 0+000** |  | 2015-04-01 | 2015-10-08 |  |  |  |  |  |  |  |  |  |
| 823B-RHW-4010 |  | Cut the existing ground to formation level | 30d | 2015-04-01 A | 2015-04-30 A | 823B-RHW-3020 | 100% | 2015-05-28 | 2015-07-03 |  | 100% | 100% |  | 823B_AB |
| 823B-RHW-4020 |  | Upstream - rock fill slope & rip-rap base construction | 48d | 2015-04-13 A | 2015-10-08 A | 823B-RHW-4010 | 100% | 2015-07-04 | 2015-08-28 |  | 100% | 100% |  | 823B_AB |
|  | 08 | **NOISE BARRIERS** |  | 2012-07-03 | 2015-11-07 |  |  |  |  |  |  |  |  |  |
| 823B-NOB-1010 |  | Noise barrier foundation at Eastern side (for 8m high noise barrier) | 211d | 2012-07-16 A | 2013-03-28 A | 823B-EBC-1010, 823B-EBC-1060, 823B-EBC-1070, 823B-EBC-1080, 823B-EBC-1090 SS, 823B-EBC-1120, 823B-EBC-1130, 823B-EBC-1140, 823B-EBC-1160, 823B-EBC-1170, 823B-EBC-1190 SS, 823B-EBC-1200 SS, 823B-EBC-1210 SS, 823B-EBC-1230 SS, 823B-EBC-1250 SS, 823B-EBC-1280 SS, 823B-EBC-1300 SS, 823B-EBC-1320 SS, 823B-EBC-1020 SS, 823B-EBC-1100 SS, 823B-EBC-1290 SS | 100% |  |  | Concrete [1720 Cu m] | 100% | 100% | H002 | 823B_AB |
| 823B-NOB-1030 |  | Noise barrier foundation at Eastern side (for 5m high noise barrier) | 69d | 2012-11-05 A | 2013-01-26 A | 823B-AC-0110 | 100% |  |  |  | 100% | 100% |  | 823B_AB |
| 823B-NOB-1040 |  | Install 5m high noise barrier panels | 24d | 2014-08-01 A | 2015-06-01 A | 823B-NOB-1030, 823B-RDW-1025 SS+26d | 100% | 2014-08-01 | 2014-08-28 |  | 100% | 100% |  | 823B_AB |
| 823B-NOB-1020 |  | Install 8m high noise barrier panels | 102d | 2015-04-01 A | 2015-07-11 A | 823B-NOB-1010, 823B-NB12-G-1090 | 100% | 2015-10-17 | 2016-02-16 |  | 100% | 100% |  | 823B_AB |
|  | 1 | **3.5m High Noise Barrier adjacent to Kam Tin Road (Length 47.6m)** |  | 2012-07-03 | 2015-06-01 |  |  |  |  |  |  |  |  |  |
| 823B-NB3.5-1005 |  | Implementation / Maintenance of Kam Tin Road diversion | 395d | 2012-07-03 A | 2014-03-28 A | 823B-KTR-1020 SS | 100% | 2012-07-03 | 2013-10-29 |  | 100% | 100% |  | 823B_AB |
| 823B-NB3.5-1010 |  | Reinstatement of existing Kam Tin Road including removal of temporary Kam Tin Road traffic deck | 266d | 2012-12-01 A | 2014-03-29 A | 823B-NB3.5-1005 SS | 100% | 2012-12-01 | 2013-10-26 |  | 100% | 100% |  | 823B_AB |
| 823B-NB3.5-1100 |  | Excavation and lateral support for noise barrier Bay 1 to Bay 6 | 14d | 2013-11-28 A | 2014-10-03 A | 823B-NB3.5-1090 | 100% | 2014-03-14 | 2014-03-29 |  | 100% | 100% |  | 823B_AB |
| 823B-NB3.5-1110 |  | Construction of Noise Barrier 47.6m (6 Bays, 2 set of formwork) | 28d | 2013-12-03 A | 2015-01-28 A | 823B-NB3.5-1100 | 100% | 2014-03-31 | 2014-05-08 |  | 100% | 100% |  | 823B_AB |
| 823B-NB3.5-1020 |  | Installation 3 roll of sheet pile from manhole S8 to S9 | 14d | 2014-12-13 A | 2014-12-31 A | 823B-NB10-Z01-1120, 823B-NB3.5-1010, 823B-NB3.5-1005 SS | 100% |  |  |  | 100% | 100% |  | 823B_AB |
| 823B-NB3.5-1120 |  | Backfilling to ground level and removal of strut | 21d | 2015-01-29 A | 2015-02-25 A | 823B-NB3.5-1110 | 100% | 2015-04-18 | 2015-05-13 |  | 100% | 100% |  | 823B_AB |
| 823B-NB3.5-1030 |  | Excavation and lateral support to +8.40mPD | 14d | 2015-02-02 A | 2015-02-17 A | 823B-NB3.5-1020 | 100% |  |  |  | 100% | 100% |  | 823B_AB |
| 823B-NB3.5-1070 |  | Laying of 225mm dia. foul sewer from F52 to F55 and testing | 7d | 2015-02-02 A | 2015-03-14 A | 823B-NB3.5-1060 | 100% | 2015-03-27 | 2015-04-08 |  | 100% | 100% |  | 823B_AB |
| 823B-NB3.5-1050 |  | Construction of Manhole S8 and S9 | 12d | 2015-02-10 A | 2015-02-26 A | 823B-NB3.5-1040 | 100% | 2015-03-02 | 2015-03-14 |  | 100% | 100% |  | 823B_AB |
| 823B-NB3.5-1040 |  | Laying of 1050mm dia storm drain from S8 to S9 and testing | 7d | 2015-02-18 A | 2015-02-28 A | 823B-NB3.5-1030 | 100% |  |  |  | 100% | 100% |  | 823B_AB |
| 823B-NB3.5-1060 |  | Backfilling to +10.8 | 10d | 2015-03-02 A | 2015-03-12 A | 823B-NB3.5-1050 | 100% |  |  |  | 100% | 100% |  | 823B_AB |
| 823B-NB3.5-1080 |  | Construction of Manhole F52, F53, F55 | 18d | 2015-03-02 A | 2015-03-17 A | 823B-NB3.5-1070 | 100% | 2015-04-09 | 2015-04-29 |  | 100% | 100% |  | 823B_AB |
| 823B-NB3.5-1130 |  | Laying gully drain and utilities | 81d | 2015-03-02 A | 2015-03-14 A | 823B-NB3.5-1120 FF, 823B-NB3.5-1110 | 100% | 2015-04-08 | 2015-07-15 |  | 100% | 100% |  | 823B_AB |
| 823B-NB3.5-1140 |  | Construction road kerb and road pavement,etc. | 46d | 2015-03-16 A | 2015-03-30 A | 823B-NB3.5-1130 | 100% | 2015-07-16 | 2015-09-07 |  | 100% | 100% |  | 823B_AB |
| 823B-NB3.5-1090 |  | Backfilling to ground level and removal of strut | 12d | 2015-03-18 A | 2015-03-30 A | 823B-NB3.5-1080 | 100% | 2015-03-20 | 2015-04-02 |  | 100% | 100% |  | 823B_AB |
| 823B-NB3.5-1150 |  | Install 3.5m high noise barrier panels | 12d | 2015-04-01 A | 2015-06-01 A | 823B-NB3.5-1110, 823B-NOB-1020 | 100% | 2016-02-17 | 2016-03-01 |  | 100% | 100% |  | 823B_AB |

| ID | WBS | Activity | Duration | Start | Finish | Predecessors | Complete | Planned start | Planned finish | user_text6 | user_text7 | 823B_As-built | Time Gain / Loss |
| --- | --- | --- | --- | --- | --- | --- | --- | --- | --- | --- | --- | --- | --- |
|  | 2 | **10m High Noise Barrier at SSS PA3 Area (Length 571m)** |  | 2012-11-26 | 2015-08-10 |  |  |  |  |  |  |  |  |
| 823B-NB10-G-1030 |  | Backfilling of V channel | 111d | 2012-11-26 A | 2013-04-15 A | 823B-SFE-1010 | 100% |  |  | 100% | 100% | 823B_AB |  |
| 823B-NB10-G-1040 |  | Installation sheet pile from Noise Barrier Bay 1 ~ Bay 61 | 91d | 2012-12-28 A | 2013-04-22 A | 823B-NB10-G-1030 SS+26d | 100% |  |  | 100% | 100% | 823B_AB |  |
| 823B-NB10-G-1010 |  | Construction of partial SSS work (6 track area) PA3.1 | 97d | 2013-04-16 A | 2014-11-05 A | 823B-NB10-G-1030 | 100% | 2013-04-16 | 2013-08-10 | 100% | 100% | 823B_AB |  |
| 823B-NB10-G-1020 |  | Construction of remaining SSS work (2 track area) PA3.2 | 53d | 2013-09-13 A | 2014-12-12 A | 823B-NB10-G-1010 FS+28d | 100% | 2013-09-13 | 2013-11-16 | 100% | 100% | 823B_AB |  |
| 823B-NB10-G-1070 |  | Install 10m high noise barrier panels | 192d | 2014-08-01 A | 2015-08-10 A | 823B-NOB-1040, 823B-NB10-Z01-1050, 823B-NB10-Z02-1050, 823B-NB10-Z03-1070, 823B-NB10-Z04-1070, 823B-NB10-Z05-1060, 823B-NB10-Z06-1020, 823B-NB10-Z07-1020, 823B-NB10-Z08-1020, 823B-NB10-Z09-1020, 823B-NB10-Z10-1020, 823B-NB10-Z11-1020, 823B-NB10-Z12-1020 | 100% | 2014-08-29 | 2015-04-24 | 100% | 100% | 823B_AB |  |
| 823B-NB10-G-1050 |  | Laying gully drain and utilities | 95d | 2014-09-01 A | 2014-09-30 A | 823B-NB10-Z01-1120, 823B-NB10-Z11-1090, 823B-NB10-Z05-1110, 823B-NB10-Z04-1120, 823B-NB10-Z02-1120, 823B-NB10-Z12-1080, 823B-NB10-G-1020, 823B-NB10-Z09-1090, 823B-NB10-Z08-1080, 823B-NB10-Z03-1120, 823B-NB10-Z06-1090, 823B-NB10-Z07-1090, 823B-NB10-Z10-1090 | 100% | 2014-11-11 | 2015-03-07 | 100% | 100% | 823B_AB |  |
| 823B-NB10-G-1060 |  | Construction road kerb and road pavement,etc. | 46d | 2014-09-01 A | 2014-09-30 A | 823B-NB10-G-1050 | 100% | 2015-03-09 | 2015-05-06 | 100% | 100% | 823B_AB |  |
|  | 1 | **Area 1** |  | 2013-12-02 | 2014-12-12 |  |  |  |  |  |  |  |  |
|  | 1 | **Bay 1 to Bay 5 (5 Bay, Length 49.1m)** |  | 2013-12-02 | 2014-12-12 |  |  |  |  |  |  |  |  |
| 823B-NB10-Z01-1010 |  | Excavation and lateral support | 31d | 2013-12-02 A | 2014-01-18 A | 823B-NB10-G-1030, 823B-NB10-G-1040 FS+25d, 823B-ERS-A1-RT-1040 | 100% | 2013-05-24 | 2013-06-29 | 100% | 100% | 823B_AB |  |
| 823B-NB10-Z01-1050 |  | Construction of Noise Barrier | 40d | 2013-12-27 A | 2014-02-12 A | 823B-NB10-Z01-1040 | 100% | 2013-07-25 | 2013-09-09 | 100% | 100% | 823B_AB |  |
| 823B-NB10-Z01-1060 |  | Backfilling storm drain formation | 3d | 2014-02-13 A | 2014-02-17 A | 823B-NB10-Z01-1050 | 100% | 2013-09-10 | 2013-09-12 | 100% | 100% | 823B_AB |  |
| 823B-NB10-Z01-1020 |  | Laying 1050mm storm drain from S8 to S7 (length 75m) and testing | 6d | 2014-05-02 A | 2014-05-09 A | 823B-NB10-Z01-1010 | 100% |  |  | 100% | 100% | 823B_AB | -22 |
| 823B-NB10-Z01-1030 |  | Construction of storm water manhole S8 | 7d | 2014-05-10 A | 2014-05-17 A | 823B-NB10-Z01-1020 | 100% |  |  | 100% | 100% | 823B_AB | -22 |
| 823B-NB10-Z01-1040 |  | Backfilling to noise barrier formation | 7d | 2014-05-19 A | 2014-05-26 A | 823B-NB10-Z01-1030 | 100% |  |  | 100% | 100% | 823B_AB | -22 |
| 823B-NB10-Z01-1070 |  | Laying 375mm storm drain from S8 to CP9B (length 15.3m), 250mm HDPE pipe (length 49.1m) | 4d | 2014-07-02 A | 2014-09-02 A | 823B-NB10-Z01-1060 | 100% | 2014-07-02 | 2014-07-05 | 100% | 100% | 823B_AB |  |
| 823B-NB10-Z01-1090 |  | Laying of 225mm Sewerage pipe from F52 to F50 (Length 73.4m) and testing | 6d | 2014-07-02 A | 2014-09-03 A | 823B-NB10-Z01-1060 | 100% | 2014-07-02 | 2014-07-08 | 100% | 100% | 823B_AB |  |
| 823B-NB10-Z01-1080 |  | Construction of storm water manhole CP9B | 4d | 2014-07-07 A | 2014-09-04 A | 823B-NB10-Z01-1070 | 100% | 2014-07-07 | 2014-07-10 | 100% | 100% | 823B_AB |  |
| 823B-NB10-Z01-1100 |  | Construction of storm water manhole F52, F51 and F50 | 7d | 2014-07-09 A | 2014-09-08 A | 823B-NB10-Z01-1090 | 100% | 2014-07-09 | 2014-07-16 | 100% | 100% | 823B_AB |  |
| 823B-NB10-Z01-1110 |  | Backfilling to ground level and removal of strut | 12d | 2014-07-17 A | 2014-09-16 A | 823B-NB10-Z01-1080, 823B-NB10-Z01-1100 | 100% | 2014-07-17 | 2014-07-30 | 100% | 100% | 823B_AB |  |
| 823B-NB10-Z01-1120 |  | Construction of remaining SSS work (2 track area) PA3.2 | 28d | 2014-07-21 A | 2014-12-12 A | 823B-NB10-Z01-1110 | 100% | 2014-07-31 | 2014-09-01 | 100% | 100% | 823B_AB |  |
|  | 2 | **Area 2** |  | 2013-11-14 | 2014-09-17 |  |  |  |  |  |  |  |  |
|  | 1 | **Bay 6 to Bay 10 (5 Bay, Length 45m)** |  | 2014-05-02 | 2014-09-08 |  |  |  |  |  |  |  |  |
| 823B-NB10-Z02-1010 |  | Excavation and lateral support | 29d | 2014-05-02 A | 2014-05-02 A | 823B-NB10-G-1040 FS+25d, 823B-ERS-A1-RT-1040 | 100% | 2014-05-02 | 2014-06-06 | 100% | 100% | 823B_AB | -22 |
| 823B-NB10-Z02-1020 |  | Laying 1050mm storm drain from S7 to S6 (length 43.1m) and testing | 6d | 2014-05-03 A | 2014-05-10 A | 823B-NB10-Z02-1010 | 100% | 2014-06-07 | 2014-06-13 | 100% | 100% | 823B_AB | -22 |
| 823B-NB10-Z02-1030 |  | Construction of storm water manhole S7 | 7d | 2014-05-12 A | 2014-05-17 A | 823B-NB10-Z02-1020 | 100% | 2014-06-14 | 2014-06-21 | 100% | 100% | 823B_AB | -22 |
| 823B-NB10-Z02-1040 |  | Backfilling to noise barrier formation | 6d | 2014-05-19 A | 2014-05-24 A | 823B-NB10-Z02-1030 | 100% | 2014-06-23 | 2014-06-28 | 100% | 100% | 823B_AB | -22 |
| 823B-NB10-Z02-1050 |  | Construction of Noise Barrier | 40d | 2014-05-26 A | 2014-05-31 A | 823B-NB10-Z02-1040 | 100% | 2014-06-30 | 2014-08-15 | 100% | 100% | 823B_AB |  |
| 823B-NB10-Z02-1060 |  | Backfilling foul sewer formation | 6d | 2014-07-02 A | 2014-07-08 A | 823B-NB10-Z02-1050 | 100% |  |  | 100% | 100% | 823B_AB | -15 |
| 823B-NB10-Z02-1120 |  | Construction of remaining SSS work (2 track area) PA3.2 | 28d | 2014-07-02 A | 2014-07-14 A | 823B-NB10-Z02-1110 | 100% | 2014-08-07 | 2014-09-08 | 100% | 100% | 823B_AB | -15 |
| 823B-NB10-Z02-1070 |  | Laying of 225mm Sewerage pipe from F50 to F50A to FPC6 (Length 32.4m) and testing | 6d | 2014-07-09 A | 2014-09-02 A | 823B-NB10-Z02-1060 | 100% | 2014-07-09 | 2014-07-15 | 100% | 100% | 823B_AB |  |
| 823B-NB10-Z02-1090 |  | Laying 250mm HDPE pipe (length 45m) and 450mm storm drain from S7 to CP7 (Length 8.3m) and testing | 4d | 2014-07-09 A | 2014-09-01 A | 823B-NB10-Z02-1060 | 100% | 2014-07-09 | 2014-07-12 | 100% | 100% | 823B_AB |  |
| 823B-NB10-Z02-1100 |  | Construction of storm water manhole CP7 | 4d | 2014-07-14 A | 2014-09-02 A | 823B-NB10-Z02-1090 | 100% | 2014-07-14 | 2014-07-17 | 100% | 100% | 823B_AB |  |
| 823B-NB10-Z02-1080 |  | Construction of foul sewer manhole F50A and FPC6 | 7d | 2014-07-16 A | 2014-09-04 A | 823B-NB10-Z02-1070 | 100% | 2014-07-16 | 2014-07-23 | 100% | 100% | 823B_AB |  |
| 823B-NB10-Z02-1110 |  | Backfilling to ground level and removal of strut | 12d | 2014-07-24 A | 2014-09-08 A | 823B-NB10-Z02-1100, 823B-NB10-Z02-1080 | 100% | 2014-07-24 | 2014-08-06 | 100% | 100% | 823B_AB |  |

| ID | WBS | Activity | Duration | Start | Finish | Predecessors | Complete | Planned start | Planned finish | user_text6 | user_text7 | Time Gain / Loss | 823B_As-built |
| --- | --- | --- | --- | --- | --- | --- | --- | --- | --- | --- | --- | --- | --- |
|  | 2 | **Bay 11 to Bay 15 (5 Bay, Length 45m)** |  | 2013-11-14 | 2014-09-06 |  |  |  |  |  |  |  |  |
| 823B-NB10-Z03-1010 |  | Excavation and lateral support | 29d | 2013-11-14 A | 2014-05-02 A | 823B-NB10-Z02-1010 SS | 100% | 2013-05-24 | 2013-06-27 | 100% | 100% | -22 | 823B_AB |
| 823B-NB10-Z03-1070 |  | Construction of Noise Barrier | 40d | 2014-02-11 A | 2014-05-31 A | 823B-NB10-Z03-1060 | 100% | 2013-07-22 | 2013-09-05 | 100% | 100% |  | 823B_AB |
| 823B-NB10-Z03-1020 |  | Laying of 225mm Sewerage pipe from F49 to F48 (Length 14.5m) and testing | 6d | 2014-05-03 A | 2014-05-07 A | 823B-NB10-Z03-1010 | 100% | 2014-05-30 | 2014-06-06 | 100% | 100% | -22 | 823B_AB |
| 823B-NB10-Z03-1030 |  | Construction of storm water manhole F49 and F48 | 7d | 2014-05-08 A | 2014-05-12 A | 823B-NB10-Z03-1020 | 100% | 2014-06-07 | 2014-06-14 | 100% | 100% | -22 | 823B_AB |
| 823B-NB10-Z03-1040 |  | Laying 900mm storm drain from S6 to S5 (length 38.9m) and testing | 6d | 2014-05-13 A | 2014-05-16 A | 823B-NB10-Z03-1020 SS | 100% | 2014-05-30 | 2014-06-06 | 100% | 100% | -22 | 823B_AB |
| 823B-NB10-Z03-1050 |  | Construction of storm water manhole S6 and S5 | 7d | 2014-05-17 A | 2014-05-21 A | 823B-NB10-Z03-1040 | 100% | 2014-06-07 | 2014-06-14 | 100% | 100% | -22 | 823B_AB |
| 823B-NB10-Z03-1060 |  | Backfilling to noise barrier formation | 6d | 2014-05-22 A | 2014-05-24 A | 823B-NB10-Z03-1050, 823B-NB10-Z03-1030 | 100% | 2014-06-16 | 2014-06-21 | 100% | 100% | -22 | 823B_AB |
| 823B-NB10-Z03-1080 |  | Backfilling to storm drainage formation | 6d | 2014-07-02 A | 2014-07-08 A | 823B-NB10-Z03-1070 | 100% |  |  | 100% | 100% | -15 | 823B_AB |
| 823B-NB10-Z03-1120 |  | Construction of remaining SSS work (2 track area) PA3.2 | 28d | 2014-07-02 A | 2014-07-14 A | 823B-NB10-Z03-1110 | 100% | 2014-08-02 | 2014-09-03 | 100% | 100% | -15 | 823B_AB |
| 823B-NB10-Z03-1090 |  | Laying 250mm HDPE pipe (length 45m) and 450mm storm drain from S5 to CP5 (Length 4.8m) and testing | 2d | 2014-07-09 A | 2014-09-01 A | 823B-NB10-Z03-1080 | 100% | 2014-07-09 | 2014-07-10 | 100% | 100% |  | 823B_AB |
| 823B-NB10-Z03-1100 |  | Construction of storm water manhole CP5 | 4d | 2014-07-11 A | 2014-09-02 A | 823B-NB10-Z03-1090 | 100% | 2014-07-11 | 2014-07-15 | 100% | 100% |  | 823B_AB |
| 823B-NB10-Z03-1110 |  | Backfilling to ground level and removal of strut | 15d | 2014-07-16 A | 2014-09-06 A | 823B-NB10-Z03-1100 | 100% | 2014-07-16 | 2014-08-01 | 100% | 100% |  | 823B_AB |
|  | 3 | **Bay 16 to Bay 20 (5 Bay, Length 45m)** |  | 2013-11-14 | 2014-09-04 |  |  |  |  |  |  |  |  |
| 823B-NB10-Z04-1010 |  | Excavation and lateral support | 29d | 2013-11-14 A | 2013-12-23 A | 823B-NB10-Z03-1010 SS | 100% | 2013-05-24 | 2013-06-27 | 100% | 100% |  | 823B_AB |
| 823B-NB10-Z04-1070 |  | Construction of Noise Barrier | 40d | 2013-11-19 A | 2014-02-19 A | 823B-NB10-Z04-1030, 823B-NB10-Z04-1060 | 100% | 2013-07-22 | 2013-09-05 | 100% | 100% |  | 823B_AB |
| 823B-NB10-Z04-1080 |  | Backfilling to storm drainage formation | 6d | 2014-02-20 A | 2014-02-27 A | 823B-NB10-Z04-1070 | 100% | 2013-09-06 | 2013-09-12 | 100% | 100% |  | 823B_AB |
| 823B-NB10-Z04-1020 |  | Laying of 225mm Sewerage pipe from F48 to F47 (Length 38.8m) and testing | 6d | 2014-05-02 A | 2014-05-07 A | 823B-NB10-Z04-1010 | 100% | 2014-05-02 | 2014-05-09 | 100% | 100% | -22 | 823B_AB |
| 823B-NB10-Z04-1030 |  | Construction of storm water manhole F48 and F47 | 7d | 2014-05-08 A | 2014-05-12 A | 823B-NB10-Z04-1020 | 100% | 2014-05-10 | 2014-05-17 | 100% | 100% | -22 | 823B_AB |
| 823B-NB10-Z04-1040 |  | Laying 750mm storm drain from S5 to S4 (length 78.3m) and testing | 6d | 2014-05-13 A | 2014-05-16 A | 823B-NB10-Z04-1020 SS | 100% | 2014-05-02 | 2014-05-09 | 100% | 100% | -22 | 823B_AB |
| 823B-NB10-Z04-1050 |  | Construction of storm water manhole S5 | 7d | 2014-05-17 A | 2014-05-21 A | 823B-NB10-Z04-1040 | 100% | 2014-05-10 | 2014-05-17 | 100% | 100% | -22 | 823B_AB |
| 823B-NB10-Z04-1060 |  | Backfilling to noise barrier formation | 6d | 2014-05-19 A | 2014-05-24 A | 823B-NB10-Z04-1050 | 100% |  |  | 100% | 100% | -22 | 823B_AB |
| 823B-NB10-Z04-1090 |  | Laying 250mm HDPE pipe (length 872m) and 450mm storm drain (length 4.8m) | 2d | 2014-07-02 A | 2014-09-01 A | 823B-NB10-Z04-1080 | 100% | 2014-07-02 | 2014-07-03 | 100% | 100% |  | 823B_AB |
| 823B-NB10-Z04-1120 |  | Construction of remaining SSS work (2 track area) PA3.2 | 28d | 2014-07-02 A | 2014-07-03 A | 823B-NB10-Z04-1110 | 100% | 2014-07-26 | 2014-08-27 | 100% | 100% | -15 | 823B_AB |
| 823B-NB10-Z04-1100 |  | Construction of storm water manhole CP5 | 4d | 2014-07-04 A | 2014-09-02 A | 823B-NB10-Z04-1090 | 100% | 2014-07-04 | 2014-07-08 | 100% | 100% |  | 823B_AB |
| 823B-NB10-Z04-1110 |  | Backfilling to ground level and removal of strut | 15d | 2014-07-09 A | 2014-09-04 A | 823B-NB10-Z04-1100 | 100% | 2014-07-09 | 2014-07-25 | 100% | 100% |  | 823B_AB |

| ID | WBS | Activity | Duration | Start | Finish | Predecessors | Complete | Planned start | Planned finish | user_text6 | user_text7 | Time Gain / Loss | 823B_As-built |
| --- | --- | --- | --- | --- | --- | --- | --- | --- | --- | --- | --- | --- | --- |
|  | 4 | **Bay 21 to Bay 24 (4 Bay, Length 36m)** |  | 2014-05-02 | 2014-09-17 |  |  |  |  |  |  |  |  |
| 823B-NB10-Z05-1010 |  | Excavation and lateral support | 27d | 2014-05-02 A | 2014-05-02 A | 823B-NB10-Z04-1010 SS | 100% | 2014-05-02 | 2014-06-04 | 100% | 100% | -22 | 823B_AB |
| 823B-NB10-Z05-1020 |  | Laying of 225mm Sewerage pipe from F47 to F46 (Length 36.7m) and testing | 6d | 2014-05-03 A | 2014-05-12 A | 823B-NB10-Z05-1010 | 100% | 2014-06-05 | 2014-06-11 | 100% | 100% | -22 | 823B_AB |
| 823B-NB10-Z05-1030 |  | Laying 750mm storm drain from S5 to S4 (length 78.3m) and testing | 6d | 2014-05-13 A | 2014-05-16 A | 823B-NB10-Z05-1020 SS | 100% | 2014-06-05 | 2014-06-11 | 100% | 100% | -22 | 823B_AB |
| 823B-NB10-Z05-1040 |  | Construction of storm water manhole S5 | 7d | 2014-05-17 A | 2014-05-21 A | 823B-NB10-Z05-1030 | 100% | 2014-06-12 | 2014-06-19 | 100% | 100% | -22 | 823B_AB |
| 823B-NB10-Z05-1050 |  | Backfilling to noise barrier formation | 6d | 2014-05-22 A | 2014-05-24 A | 823B-NB10-Z05-1040 | 100% | 2014-06-20 | 2014-06-26 | 100% | 100% | -22 | 823B_AB |
| 823B-NB10-Z05-1060 |  | Construction of Noise Barrier | 32d | 2014-05-26 A | 2014-05-31 A | 823B-NB10-Z05-1050 | 100% | 2014-06-27 | 2014-08-04 | 100% | 100% |  | 823B_AB |
| 823B-NB10-Z05-1070 |  | Backfilling to storm drainage formation | 6d | 2014-07-02 A | 2014-09-03 A | 823B-NB10-Z05-1060 | 100% | 2014-07-02 | 2014-07-08 | 100% | 100% |  | 823B_AB |
| 823B-NB10-Z05-1110 |  | Construction of remaining SSS work (2 track area) PA3.2 | 28d | 2014-07-02 A | 2014-07-03 A | 823B-NB10-Z05-1100 | 100% | 2014-08-02 | 2014-09-03 | 100% | 100% | -15 | 823B_AB |
| 823B-NB10-Z05-1080 |  | Laying 250mm HDPE pipe (length 872m) and 450mm storm drain (length 4.8m) | 2d | 2014-07-09 A | 2014-09-04 A | 823B-NB10-Z05-1070 | 100% | 2014-07-09 | 2014-07-10 | 100% | 100% |  | 823B_AB |
| 823B-NB10-Z05-1090 |  | Construction of storm water manhole CP5 | 4d | 2014-07-11 A | 2014-09-06 A | 823B-NB10-Z05-1080 | 100% | 2014-07-11 | 2014-07-15 | 100% | 100% |  | 823B_AB |
| 823B-NB10-Z05-1100 |  | Backfilling to ground level and removal of strut | 15d | 2014-07-16 A | 2014-09-17 A | 823B-NB10-Z05-1090 | 100% | 2014-07-16 | 2014-08-01 | 100% | 100% |  | 823B_AB |
|  | 3 | **Area 3** |  | 2013-08-03 | 2014-07-31 |  |  |  |  |  |  |  |  |
|  | 1 | **Bay 25 to Bay 31 (7 Bay, Length 63m)** |  | 2013-08-03 | 2014-07-31 |  |  |  |  |  |  |  |  |
| 823B-NB10-Z06-1010 |  | Excavation and lateral support | 21d | 2013-08-03 A | 2013-09-18 A | 823B-ERS-A3-RT-1080, 823B-ERS-A3-RT-1110, 823B-ERS-A3-RT-1200, 823B-ERS-A4-RT-1070, 823B-ERS-A5-RT-1040, 823B-ERS-A5-RT-1120, 823B-ERS-A5-RT-1230, 823B-ERS-A4-RT-1060, 823B-ERS-A4-RT-1110 | 100% | 2013-04-02 | 2013-04-26 | 100% | 100% |  | 823B_AB |
| 823B-NB10-Z06-1020 |  | Construction of Noise Barrier (2 set formwork) | 34d | 2013-08-07 A | 2014-07-21 A | 823B-NB10-Z06-1010 | 100% | 2013-04-27 | 2013-06-07 | 100% | 100% | -24 | 823B_AB |
| 823B-NB10-Z06-1080 |  | Backfilling to ground level and removal of strut | 13d | 2013-09-13 A | 2014-07-02 A | 823B-NB10-Z06-1070 | 100% | 2013-07-15 | 2013-07-29 | 100% | 100% | -24 | 823B_AB |
| 823B-NB10-Z06-1090 |  | Construction of remaining SSS work (2 track area) PA3.2 | 30d | 2013-09-16 A | 2014-07-02 A | 823B-NB10-Z06-1080, 823B-NB10-Z07-1080 | 100% | 2013-09-13 | 2013-10-21 | 100% | 100% | -24 | 823B_AB |
| 823B-NB10-Z06-1030 |  | Laying of 225mm Sewerage pipe from F46 to F44 (Length 76.9m) and testing | 6d | 2014-07-02 A | 2014-07-08 A | 823B-NB10-Z06-1020 | 100% | 2014-07-22 | 2014-07-28 | 100% | 100% | -24 | 823B_AB |
| 823B-NB10-Z06-1040 |  | Construction of storm water manhole F46 and F45 | 4d | 2014-07-09 A | 2014-07-14 A | 823B-NB10-Z06-1030 | 100% | 2014-07-29 | 2014-08-01 | 100% | 100% | -24 | 823B_AB |
| 823B-NB10-Z06-1050 |  | Backfilling to storm drainage formation | 6d | 2014-07-15 A | 2014-07-21 A | 823B-NB10-Z06-1040 | 100% | 2014-08-02 | 2014-08-08 | 100% | 100% | -24 | 823B_AB |
| 823B-NB10-Z06-1060 |  | Laying 675mm & 450mm storm drain from S4 to S3, S4 to CP4 (length 83.7m), 250mm HDPE pipe (length 63m) and testing | 6d | 2014-07-22 A | 2014-07-28 A | 823B-NB10-Z06-1050 | 100% | 2014-08-09 | 2014-08-15 | 100% | 100% | -24 | 823B_AB |
| 823B-NB10-Z06-1070 |  | Construction of storm water manhole S4 and CP4 | 7d | 2014-07-29 A | 2014-07-31 A | 823B-NB10-Z06-1060 | 100% | 2014-08-16 | 2014-08-23 | 100% | 100% |  | 823B_AB |
|  | 2 | **Bay 32 to Bay 36 (5 Bay, Length 45m)** |  | 2013-08-03 | 2014-07-30 |  |  |  |  |  |  |  |  |
| 823B-NB10-Z07-1010 |  | Excavation and lateral support | 17d | 2013-08-03 A | 2013-08-15 A | 823B-NB10-Z06-1010 | 100% | 2013-04-27 | 2013-05-18 | 100% | 100% |  | 823B_AB |
| 823B-NB10-Z07-1020 |  | Construction of Noise Barrier | 40d | 2013-08-07 A | 2013-09-14 A | 823B-NB10-Z06-1020, 823B-NB10-Z07-1010 | 100% | 2013-06-08 | 2013-07-26 | 100% | 100% |  | 823B_AB |
| 823B-NB10-Z07-1070 |  | Construction of storm water manhole S2 and CP3 | 4d | 2013-09-09 A | 2013-11-06 A | 823B-NB10-Z07-1060 | 100% | 2013-08-26 | 2013-08-29 | 100% | 100% |  | 823B_AB |
| 823B-NB10-Z07-1040 |  | Construction of storm water manhole F44 and F43 | 7d | 2013-10-05 A | 2013-10-12 A | 823B-NB10-Z07-1030 | 100% | 2013-08-03 | 2013-08-10 | 100% | 100% |  | 823B_AB |
| 823B-NB10-Z07-1060 |  | Laying 525mm & 450mm storm drain from S3 to S2, S3 to CP3 (length 44.3m), 250mm HDPE pipe (length 45m) and testing | 6d | 2013-11-04 A | 2013-11-14 A | 823B-NB10-Z07-1050 | 100% | 2013-08-19 | 2013-08-24 | 100% | 100% |  | 823B_AB |
| 823B-NB10-Z07-1080 |  | Backfilling to ground level and removal of strut | 12d | 2013-11-07 A | 2013-11-19 A | 823B-NB10-Z07-1070 | 100% | 2013-08-30 | 2013-09-12 | 100% | 100% |  | 823B_AB |
| 823B-NB10-Z07-1090 |  | Construction of remaining SSS work (2 track area) PA3.2 | 28d | 2013-11-20 A | 2013-12-21 A | 823B-NB10-Z07-1080 | 100% | 2013-09-13 | 2013-10-18 | 100% | 100% |  | 823B_AB |
| 823B-NB10-Z07-1030 |  | Laying of 225mm Sewerage pipe from F44 to F43 (Length 38.4m) and testing | 6d | 2014-07-22 A | 2014-07-28 A | 823B-NB10-Z07-1020 | 100% |  |  | 100% | 100% | -19 | 823B_AB |
| 823B-NB10-Z07-1050 |  | Backfilling to storm drainage formation | 6d | 2014-07-24 A | 2014-07-30 A | 823B-NB10-Z07-1040 | 100% | 2014-07-29 | 2014-08-04 | 100% | 100% | -19 | 823B_AB |

| ID | WBS | Activity | Duration | Start | Finish | Predecessors | Complete | Planned start | Planned finish | user_text6 | user_text7 | 823B_As-built | Time Gain / Loss |
| --- | --- | --- | --- | --- | --- | --- | --- | --- | --- | --- | --- | --- | --- |
|  | 4 | **Area 4** |  | 2013-08-01 | 2014-09-11 |  |  |  |  |  |  |  |  |
|  | 1 | **Bay 37 to Bay 41 (5 Bay, Length 45m)** |  | 2013-08-01 | 2014-07-11 |  |  |  |  |  |  |  |  |
| 823B-NB10-Z08-1010 |  | Excavation and lateral support | 16d | 2013-08-01 A | 2013-08-15 A | 823B-ERS-A3-RT-1080, 823B-ERS-A3-RT-1110, 823B-ERS-A3-RT-1200, 823B-ERS-A4-RT-1070, 823B-ERS-A5-RT-1040, 823B-ERS-A5-RT-1120, 823B-ERS-A5-RT-1230, 823B-ERS-A4-RT-1060, 823B-ERS-A4-RT-1110 | 100% | 2013-04-02 | 2013-04-20 | 100% | 100% | 823B_AB |  |
| 823B-NB10-Z08-1020 |  | Construction of Noise Barrier | 40d | 2013-08-08 A | 2013-08-26 A | 823B-NB10-Z08-1010 | 100% | 2013-04-22 | 2013-06-08 | 100% | 100% | 823B_AB |  |
| 823B-NB10-Z08-1050 |  | Laying 525mm storm drain from S2 to S1 (length 39.7m), 250mm HDPE pipe (length 45m) and testing | 4d | 2013-10-30 A | 2013-11-04 A | 823B-NB10-Z08-1040 | 100% | 2013-06-21 | 2013-06-25 | 100% | 100% | 823B_AB |  |
| 823B-NB10-Z08-1060 |  | Construction of storm water manhole S2 | 4d | 2013-11-01 A | 2013-11-06 A | 823B-NB10-Z08-1050 | 100% | 2013-06-26 | 2013-06-29 | 100% | 100% | 823B_AB |  |
| 823B-NB10-Z08-1070 |  | Backfilling to ground level and removal of strut | 10d | 2013-11-07 A | 2013-11-18 A | 823B-NB10-Z08-1060 | 100% | 2013-07-02 | 2013-07-12 | 100% | 100% | 823B_AB |  |
| 823B-NB10-Z08-1080 |  | Construction of remaining SSS work (2 track area) PA3.2 | 28d | 2013-11-19 A | 2013-12-20 A | 823B-NB10-Z08-1070, 823B-NB10-Z07-1080 | 100% | 2013-09-13 | 2013-10-18 | 100% | 100% | 823B_AB |  |
| 823B-NB10-Z08-1030 |  | Laying of 225mm Sewerage pipe from F43 to F42 (Length 38.4m) and testing | 6d | 2014-07-02 A | 2014-07-08 A | 823B-NB10-Z08-1020 | 100% |  |  | 100% | 100% | 823B_AB | -24 |
| 823B-NB10-Z08-1040 |  | Backfilling to storm drainage formation | 3d | 2014-07-09 A | 2014-07-11 A | 823B-NB10-Z08-1030 | 100% |  |  | 100% | 100% | 823B_AB | -24 |
|  | 2 | **Bay 42 to Bay 46 (5 Bay, Length 45m)** |  | 2013-08-22 | 2014-09-11 |  |  |  |  |  |  |  |  |
| 823B-NB10-Z09-1010 |  | Excavation and lateral support | 16d | 2013-08-22 A | 2013-08-26 A | 823B-NB10-Z08-1010 | 100% | 2013-04-22 | 2013-05-10 | 100% | 100% | 823B_AB |  |
| 823B-NB10-Z09-1020 |  | Construction of Noise Barrier | 39d | 2013-08-24 A | 2013-10-10 A | 823B-NB10-Z08-1020, 823B-NB10-Z09-1010 | 100% | 2013-06-10 | 2013-07-26 | 100% | 100% | 823B_AB |  |
| 823B-NB10-Z09-1070 |  | Construction of storm water manhole CP1 and S1 | 4d | 2013-09-24 A | 2013-10-29 A | 823B-NB10-Z09-1060 | 100% | 2013-08-16 | 2013-08-20 | 100% | 100% | 823B_AB |  |
| 823B-NB10-Z09-1040 |  | Construction of storm water manhole F42 | 4d | 2013-10-09 A | 2013-10-12 A | 823B-NB10-Z09-1030 | 100% | 2013-08-03 | 2013-08-07 | 100% | 100% | 823B_AB |  |
| 823B-NB10-Z09-1080 |  | Backfilling to ground level and removal of strut | 8d | 2013-10-30 A | 2013-11-07 A | 823B-NB10-Z09-1070 | 100% | 2013-08-21 | 2013-08-29 | 100% | 100% | 823B_AB |  |
| 823B-NB10-Z09-1060 |  | Laying 450mm storm drain from S1 to CP1 (length 5m), 250mm HDPE pipe (length 45m) and testing | 4d | 2013-11-07 A | 2013-11-12 A | 823B-NB10-Z09-1050 | 100% | 2013-08-12 | 2013-08-15 | 100% | 100% | 823B_AB |  |
| 823B-NB10-Z09-1090 |  | Construction of remaining SSS work (2 track area) PA3.2 | 28d | 2013-11-08 A | 2013-12-10 A | 823B-NB10-Z09-1080, 823B-NB10-Z08-1080 SS | 100% | 2013-09-13 | 2013-10-18 | 100% | 100% | 823B_AB |  |
| 823B-NB10-Z09-1030 |  | Laying of 225mm Sewerage pipe from F42 to F41 (Length 38.7m) and testing | 6d | 2014-09-01 A | 2014-09-06 A | 823B-NB10-Z09-1020 | 100% |  |  | 100% | 100% | 823B_AB |  |
| 823B-NB10-Z09-1050 |  | Backfilling to storm drainage formation | 3d | 2014-09-08 A | 2014-09-11 A | 823B-NB10-Z09-1040 | 100% |  |  | 100% | 100% | 823B_AB |  |
|  | 5 | **Area 5** |  | 2013-08-27 | 2014-09-30 |  |  |  |  |  |  |  |  |
|  | 1 | **Bay 47 to Bay 51 (5 Bay, Length 45m)** |  | 2013-08-27 | 2014-09-15 |  |  |  |  |  |  |  |  |
| 823B-NB10-Z10-1010 |  | Excavation and lateral support | 17d | 2013-08-27 A | 2013-10-04 A | 823B-NB10-Z09-1010 | 100% | 2013-05-11 | 2013-05-31 | 100% | 100% | 823B_AB |  |
| 823B-NB10-Z10-1020 |  | Construction of Noise Barrier | 40d | 2013-09-02 A | 2013-11-06 A | 823B-NB10-Z10-1010 | 100% | 2013-06-01 | 2013-07-19 | 100% | 100% | 823B_AB |  |
| 823B-NB10-Z10-1040 |  | Construction of storm water manhole F41 and F40 | 4d | 2013-10-22 A | 2013-10-25 A | 823B-NB10-Z10-1030 | 100% | 2013-07-27 | 2013-07-31 | 100% | 100% | 823B_AB |  |
| 823B-NB10-Z10-1070 |  | Construction of storm water manhole CP34D, S72 and S73 | 6d | 2013-10-31 A | 2013-11-25 A | 823B-NB10-Z10-1060 | 100% | 2013-08-17 | 2013-08-23 | 100% | 100% | 823B_AB |  |
| 823B-NB10-Z10-1060 |  | Laying 375mm & 225mm storm drain from CP34D to S72 to S73 (length 42.5m), 250mm HDPE pipe (length 63m) and testing | 6d | 2013-11-18 A | 2013-11-25 A | 823B-NB10-Z10-1050 | 100% | 2013-08-10 | 2013-08-16 | 100% | 100% | 823B_AB |  |
| 823B-NB10-Z10-1080 |  | Backfilling to ground level and removal of strut | 6d | 2013-11-26 A | 2013-12-02 A | 823B-NB10-Z10-1070 | 100% | 2013-08-24 | 2013-08-30 | 100% | 100% | 823B_AB |  |
| 823B-NB10-Z10-1090 |  | Construction of remaining SSS work (2 track area) PA3.2 | 28d | 2013-12-03 A | 2013-12-30 A | 823B-NB10-Z09-1090 SS, 823B-NB10-Z10-1080 | 100% | 2013-09-13 | 2013-10-18 | 100% | 100% | 823B_AB |  |
| 823B-NB10-Z10-1030 |  | Laying of 225mm &150mm Sewerage pipe from F41 to P.I. No.7 (Length 38.7m) and testing | 6d | 2014-07-02 A | 2014-09-05 A | 823B-NB10-Z10-1020 | 100% | 2014-07-02 | 2014-07-08 | 100% | 100% | 823B_AB |  |
| 823B-NB10-Z10-1050 |  | Backfilling to storm drainage formation | 8d | 2014-07-09 A | 2014-09-15 A | 823B-NB10-Z10-1040 | 100% | 2014-07-09 | 2014-07-17 | 100% | 100% | 823B_AB |  |

| ID | WBS | Activity | Duration | Start | Finish | Predecessors | Complete | Planned start | Planned finish | user_text6 | user_text7 | 823B_As-built |
| --- | --- | --- | --- | --- | --- | --- | --- | --- | --- | --- | --- | --- |
|  | 2 | **Bay 52 to Bay 56 (5 Bay, Length 45m)** |  | 2013-10-04 | 2014-09-30 |  |  |  |  |  |  |  |
| 823B-NB10-Z11-1010 |  | Excavation and lateral support | 17d | 2013-10-04 A | 2013-10-07 A | 823B-NB10-Z10-1010 SS | 100% | 2013-05-11 | 2013-05-31 | 100% | 100% | 823B_AB |
| 823B-NB10-Z11-1020 |  | Construction of Noise Barrier | 40d | 2013-10-07 A | 2013-11-09 A | 823B-NB10-Z11-1010 | 100% | 2013-06-01 | 2013-07-19 | 100% | 100% | 823B_AB |
| 823B-NB10-Z11-1030 |  | Laying 225mm storm drain from S72 to S71 (length 35.7m), 250mm HDPE pipe (length 45m) and testing | 6d | 2013-11-14 A | 2013-11-20 A | 823B-NB10-Z11-1020 | 100% | 2013-07-20 | 2013-07-26 | 100% | 100% | 823B_AB |
| 823B-NB10-Z11-1040 |  | Construction of storm water manhole S71 | 4d | 2013-11-19 A | 2013-11-22 A | 823B-NB10-Z11-1030 | 100% | 2013-07-27 | 2013-07-31 | 100% | 100% | 823B_AB |
| 823B-NB10-Z11-1080 |  | Backfilling to ground level | 6d | 2013-11-26 A | 2013-12-02 A | 823B-NB10-Z11-1070 | 100% | 2013-09-03 | 2013-09-09 | 100% | 100% | 823B_AB |
| 823B-NB10-Z11-1090 |  | Construction of remaining SSS work (2 track area) PA3.2 | 28d | 2013-12-03 A | 2013-12-30 A | 823B-NB10-Z10-1090 SS, 823B-NB10-Z11-1080 | 100% | 2013-09-13 | 2013-10-18 | 100% | 100% | 823B_AB |
| 823B-NB10-Z11-1050 |  | Backfilling to +13.750mPD and removal of strut | 16d | 2014-09-01 A | 2014-09-19 A | 823B-NB10-Z11-1040 | 100% |  |  | 100% | 100% | 823B_AB |
| 823B-NB10-Z11-1060 |  | Laying of 100mm DI pipe (Length 32.6m), 150 Sewerage pipe (Length 2.9m) and testing | 5d | 2014-09-20 A | 2014-09-25 A | 823B-NB10-Z11-1050 | 100% |  |  | 100% | 100% | 823B_AB |
| 823B-NB10-Z11-1070 |  | Construction of foul sewer manhole P.I. No.7 and FPC-5 | 7d | 2014-09-26 A | 2014-09-30 A | 823B-NB10-Z11-1060 | 100% | 2014-09-26 | 2014-10-06 | 100% | 100% | 823B_AB |
|  | 3 | **Bay 57 to Bay 61 (5 Bay, Length 52.25m)** |  | 2013-10-08 | 2014-09-27 |  |  |  |  |  |  |  |
| 823B-NB10-Z12-1010 |  | Excavation and lateral support | 23d | 2013-10-08 A | 2013-11-02 A | 823B-NB10-Z11-1010 SS | 100% | 2013-05-11 | 2013-06-07 | 100% | 100% | 823B_AB |
| 823B-NB10-Z12-1020 |  | Construction of Noise Barrier | 40d | 2013-10-09 A | 2013-11-19 A | 823B-NB10-Z12-1010 | 100% | 2013-06-08 | 2013-07-26 | 100% | 100% | 823B_AB |
| 823B-NB10-Z12-1040 |  | Construction of storm water manhole CP38D and S70 | 7d | 2013-11-12 A | 2014-09-01 A | 823B-NB10-Z12-1030 | 100% | 2013-08-03 | 2013-08-10 | 100% | 100% | 823B_AB |
| 823B-NB10-Z12-1070 |  | Backfilling to ground level | 6d | 2013-11-20 A | 2013-11-26 A | 823B-NB10-Z12-1060 | 100% | 2013-09-05 | 2013-09-11 | 100% | 100% | 823B_AB |
| 823B-NB10-Z12-1080 |  | Construction of remaining SSS work (2 track area) PA3.2 | 28d | 2013-11-27 A | 2013-12-30 A | 823B-NB10-Z11-1090 SS, 823B-NB10-Z12-1070 | 100% | 2013-09-13 | 2013-10-18 | 100% | 100% | 823B_AB |
| 823B-NB10-Z12-1030 |  | Laying of 300mm storm drain from CP38D to S69 (length 39.1m), 250mm HDPE pipe (length 55m) and testing | 6d | 2014-09-01 A | 2014-09-06 A | 823B-NB10-Z12-1020 | 100% |  |  | 100% | 100% | 823B_AB |
| 823B-NB10-Z12-1050 |  | Backfilling to +13.750mPD and removal of strut | 16d | 2014-09-02 A | 2014-09-20 A | 823B-NB10-Z12-1040 | 100% | 2014-09-13 | 2014-10-03 | 100% | 100% | 823B_AB |
| 823B-NB10-Z12-1060 |  | Laying of 100mm DI pipe (Length 101.3m) | 5d | 2014-09-22 A | 2014-09-27 A | 823B-NB10-Z12-1050 | 100% | 2014-10-04 | 2014-10-09 | 100% | 100% | 823B_AB |
|  | 3 | **9m High Noise Barrier adjacent to SSS PA2 Area (Length 321m)** |  | 2012-11-05 | 2015-11-07 |  |  |  |  |  |  |  |
| 823B-NB9-G-1010 |  | Installation sheet pile from Bay 6 to Bay 13 and Bay 21 to Bay 25 | 19d | 2013-01-07 A | 2013-01-28 A | 823B-NB10-G-1040 SS+7d | 100% |  |  | 100% | 100% | 823B_AB |
| 823B-NB9-G-1030 |  | Installation sheet pile from Bay 14 to Bay 20 | 27d | 2013-06-03 A | 2013-06-28 A | 823B-NB9-G-1020 | 100% | 2013-07-25 | 2013-08-24 | 100% | 100% | 823B_AB |
| 823B-NB9-G-1040 |  | Removal of concrete batching plant | 34d | 2014-07-02 A | 2014-07-31 A | 823B-NB9-Z02-1120, 823B-ERS-A2-PBN-1100 FS+6d, 823B-ERS-A6-PBS-1050 | 100% | 2014-10-20 | 2014-11-27 | 100% | 100% | 823B_AB |
| 823B-NB9-G-1020 |  | Removal of sheet pile from Bay 6 to Bay 13 adjacent to noise barrier | 14d | 2014-11-01 A | 2014-12-01 A | 823B-NB9-Z02-1120, 823B-NB9-Z04-1130 | 100% | 2015-02-23 | 2015-03-10 | 100% | 100% | 823B_AB |
| 823B-NB9-G-1050 |  | Removal of sheet pile from Bay 14 to Bay 25 adjacent to noise barrier | 14d | 2014-11-01 A | 2015-02-16 A | 823B-NB9-Z03-1150 | 100% | 2015-06-17 | 2015-07-04 | 100% | 100% | 823B_AB |
| 823B-NB9-G-1070 |  | Construction road kerb and road pavement,etc. | 46d | 2014-11-01 A | 2015-03-03 A | 823B-NB9-G-1060 | 100% | 2015-10-13 | 2015-12-05 | 100% | 100% | 823B_AB |
| 823B-NB9-G-1060 |  | Laying gully drain and utilities | 83d | 2015-01-05 A | 2015-02-28 A | 823B-NB9-G-1050 | 100% | 2015-02-16 | 2015-06-02 | 100% | 100% | 823B_AB |
| 823B-NB9-G-1080 |  | Install 9m high noise barrier panels | 72d | 2015-06-01 A | 2015-11-07 A | 823B-NB10-G-1070, 823B-NB9-Z01-1020, 823B-NB9-Z02-1020, 823B-NB9-Z03-1020, 823B-NB9-Z04-1020 | 100% | 2015-06-11 | 2015-09-04 | 100% | 100% | 823B_AB |

| ID | WBS | Activity | Duration | Start | Finish | Predecessors | Complete | Planned start | Planned finish | user_text6 | user_text7 | 823B_As-built |
| --- | --- | --- | --- | --- | --- | --- | --- | --- | --- | --- | --- | --- |
|  | 1 | **Bay 1 to Bay 5 (5 Bay, Length 60.3m)** |  | 2012-11-05 | 2014-12-29 |  |  |  |  |  |  |  |
| 823B-NB9-Z01-1010 |  | Open cut excavation | 23d | 2012-11-05 A | 2012-11-30 A | 823B-SFE-1010 | 100% |  |  | 100% | 100% | 823B_AB |
| 823B-NB9-Z01-1020 |  | Construction of Noise Barrier | 38d | 2012-12-01 A | 2013-01-17 A | 823B-NB9-Z01-1010 | 100% |  |  | 100% | 100% | 823B_AB |
| 823B-NB9-Z01-1030 |  | Backfilling to storm drain formation | 6d | 2013-01-18 A | 2013-01-24 A | 823B-NB9-Z01-1020 | 100% |  |  | 100% | 100% | 823B_AB |
| 823B-NB9-Z01-1070 |  | Construction of Manhole S37, S36 and S49C | 14d | 2014-03-01 A | 2014-11-01 A | 823B-NB9-Z01-1060 | 100% | 2014-03-15 | 2014-03-31 | 100% | 100% | 823B_AB |
| 823B-NB9-Z01-1140 |  | Construction of Manhole F1B, F1A and F1 | 6d | 2014-03-01 A | 2014-12-20 A | 823B-NB9-Z01-1120, 823B-NB9-Z01-1110, 823B-NB9-Z01-1130 | 100% | 2014-04-23 | 2014-04-29 | 100% | 100% | 823B_AB |
| 823B-NB9-Z01-1040 |  | Laying of 900mm storm drain from S37 to S36 (Length 29m) and testing | 4d | 2014-11-01 A | 2014-12-01 A | 823B-NB9-Z01-1030 | 100% | 2014-11-01 | 2014-11-05 | 100% | 100% | 823B_AB |
| 823B-NB9-Z01-1080 |  | Backfilling to foul sewer formation | 4d | 2014-11-03 A | 2014-11-06 A | 823B-NB9-Z01-1070 | 100% | 2014-11-27 | 2014-12-01 | 100% | 100% | 823B_AB |
| 823B-NB9-Z01-1050 |  | Laying of 750mm storm drain from S36 to S49C (Length 17.4m) and testing | 4d | 2014-11-06 A | 2014-12-02 A | 823B-NB9-Z01-1040 | 100% | 2014-11-06 | 2014-11-10 | 100% | 100% | 823B_AB |
| 823B-NB9-Z01-1060 |  | Laying of 525mm storm drain from S49C to S46C (Length 18.6m) and testing | 4d | 2014-11-11 A | 2014-12-03 A | 823B-NB9-Z01-1050 | 100% | 2014-11-11 | 2014-11-14 | 100% | 100% | 823B_AB |
| 823B-NB9-Z01-1090 |  | Laying of 300mm storm drain from S36 to CP36E (Length 4m) and testing | 4d | 2014-12-04 A | 2014-12-08 A | 823B-NB9-Z01-1080 | 100% |  |  | 100% | 100% | 823B_AB |
| 823B-NB9-Z01-1100 |  | Laying of 450mm storm drain from S36 to CP36 (Length 3m) and testing | 4d | 2014-12-04 A | 2014-12-08 A | 823B-NB9-Z01-1080 | 100% |  |  | 100% | 100% | 823B_AB |
| 823B-NB9-Z01-1110 |  | Construction of Manhole CP36E and CP36 | 7d | 2014-12-09 A | 2014-12-16 A | 823B-NB9-Z01-1090, 823B-NB9-Z01-1100 | 100% |  |  | 100% | 100% | 823B_AB |
| 823B-NB9-Z01-1120 |  | Laying of 225mm dia. foul sewer from F1B to F1 (Length 38.8m) and testing | 6d | 2014-12-09 A | 2014-12-15 A | 823B-NB9-Z01-1100 | 100% |  |  | 100% | 100% | 823B_AB |
| 823B-NB9-Z01-1130 |  | Laying of 150mm dia. foul sewer from F1 to P1 no.11 (Length 9.3m) and testing | 4d | 2014-12-09 A | 2014-12-12 A | 823B-NB9-Z01-1120 SS | 100% |  |  | 100% | 100% | 823B_AB |
| 823B-NB9-Z01-1150 |  | Laying 30mm subsoil drain from CP38F to CP36E | 2d | 2014-12-22 A | 2014-12-23 A | 823B-NB9-Z01-1140 | 100% |  |  | 100% | 100% | 823B_AB |
| 823B-NB9-Z01-1160 |  | Backfilling to formation level | 8d | 2014-12-24 A | 2014-12-29 A | 823B-NB9-Z01-1150 | 100% | 2014-12-24 | 2015-01-05 | 100% | 100% | 823B_AB |
|  | 2 | **Bay 6 to Bay 13 (7 Bay, Length 105.4m)** |  | 2013-01-29 | 2015-01-30 |  |  |  |  |  |  |  |
| 823B-NB9-Z02-1010 |  | Excavation and lateral support | 26d | 2013-01-29 A | 2013-03-02 A | 823B-NB9-G-1010 | 100% |  |  | 100% | 100% | 823B_AB |
| 823B-NB9-Z02-1020 |  | Construction of Noise Barrier | 52d | 2013-06-01 A | 2013-10-31 A | 823B-NB9-Z02-1010 | 100% | 2013-03-04 | 2013-05-08 | 100% | 100% | 823B_AB |
| 823B-NB9-Z02-1070 |  | Construction of Manhole S49, S49A and S49B | 7d | 2013-10-22 A | 2014-11-01 A | 823B-NB9-Z02-1060 | 100% | 2013-06-01 | 2013-06-08 | 100% | 100% | 823B_AB |
| 823B-NB9-Z02-1030 |  | Backfilling to storm drain formation | 7d | 2013-11-01 A | 2013-11-08 A | 823B-NB9-Z01-1160 FF, 823B-NB9-Z02-1020 | 100% | 2013-05-09 | 2013-05-16 | 100% | 100% | 823B_AB |
| 823B-NB9-Z02-1040 |  | Laying of 675mm storm drain from S49C to S49B (Length 26.6m) and testing | 4d | 2014-11-01 A | 2014-12-01 A | 823B-NB9-Z02-1030 | 100% | 2015-01-03 | 2015-01-07 | 100% | 100% | 823B_AB |
| 823B-NB9-Z02-1050 |  | Laying of 675mm storm drain from S49B to S49A (Length 39.2m) and testing | 4d | 2014-11-01 A | 2014-12-01 A | 823B-NB9-Z02-1040 | 100% | 2015-01-08 | 2015-01-12 | 100% | 100% | 823B_AB |
| 823B-NB9-Z02-1060 |  | Laying of 675mm storm drain from S49A to S49 (Length 43.4m) and testing | 4d | 2014-12-02 A | 2015-01-03 A | 823B-NB9-Z02-1050 | 100% | 2015-01-10 | 2015-01-14 | 100% | 100% | 823B_AB |
| 823B-NB9-Z02-1080 |  | Backfilling to =14.0mPD | 3d | 2015-01-05 A | 2015-01-07 A | 823B-NB9-Z02-1070 | 100% |  |  | 100% | 100% | 823B_AB |
| 823B-NB9-Z02-1090 |  | Laying 300mm storm drain from S49B to CP49B.1 (Length 2.7m) and testing | 4d | 2015-01-08 A | 2015-01-12 A | 823B-NB9-Z02-1080 | 100% |  |  | 100% | 100% | 823B_AB |
| 823B-NB9-Z02-1100 |  | Laying 300mm storm drain from S49A to CP49A.2 (Length 2.7m) and testing | 4d | 2015-01-13 A | 2015-01-16 A | 823B-NB9-Z02-1090 | 100% |  |  | 100% | 100% | 823B_AB |
| 823B-NB9-Z02-1110 |  | Laying 300mm storm drain from S49 to CP49A (Length 5.8m) and testing | 4d | 2015-01-17 A | 2015-01-21 A | 823B-NB9-Z02-1100 | 100% |  |  | 100% | 100% | 823B_AB |
| 823B-NB9-Z02-1120 |  | Backfilling to formation level | 8d | 2015-01-22 A | 2015-01-30 A | 823B-NB9-Z02-1110 | 100% |  |  | 100% | 100% | 823B_AB |

| ID | WBS | Activity | Duration | Start | Finish | Predecessors | Complete | Planned start | Planned finish | user_text6 | user_text7 | 823B_As-built | Time Gain / Loss |
| --- | --- | --- | --- | --- | --- | --- | --- | --- | --- | --- | --- | --- | --- |
|  | 3 | **Bay 14 to Bay 20 (7 Bay, Length 87.5m)** |  | 2013-08-01 | 2015-01-31 |  |  |  |  |  |  |  |  |
| 823B-NB9-Z03-1010 |  | Excavation and lateral support to +11.25mPD | 26d | 2013-08-01 A | 2014-09-22 A | 823B-NB9-G-1030 | 100% | 2013-08-26 | 2013-09-25 | 100% | 100% | 823B_AB |  |
| 823B-NB9-Z03-1020 |  | Construction of Noise Barrier (2 set of formwork) | 53d | 2013-08-21 A | 2014-07-02 A | 823B-NB9-Z03-1010 | 100% | 2013-09-26 | 2013-11-28 | 100% | 100% | 823B_AB |  |
| 823B-NB9-Z03-1030 |  | Backfilling to storm drain formation | 6d | 2014-11-01 A | 2014-11-07 A | 823B-NB9-Z03-1020 | 100% | 2015-03-11 | 2015-03-17 | 100% | 100% | 823B_AB |  |
| 823B-NB9-Z03-1040 |  | Laying of 600mm storm drain from S49 to S48 (Length 44m) and testing | 4d | 2014-11-08 A | 2014-11-12 A | 823B-NB9-Z03-1030 | 100% | 2015-03-18 | 2015-03-21 | 100% | 100% | 823B_AB |  |
| 823B-NB9-Z03-1050 |  | Laying of 600mm storm drain from S48 to S47 (Length 27.2m) and testing | 4d | 2014-11-13 A | 2014-11-17 A | 823B-NB9-Z03-1040 | 100% | 2015-03-23 | 2015-03-26 | 100% | 100% | 823B_AB |  |
| 823B-NB9-Z03-1060 |  | Laying of 600mm storm drain from S47 to S47A (Length 12.5m) and testing | 4d | 2014-11-18 A | 2014-11-21 A | 823B-NB9-Z03-1050 | 100% | 2015-03-27 | 2015-03-31 | 100% | 100% | 823B_AB |  |
| 823B-NB9-Z03-1070 |  | Laying of 600mm storm drain from S47A to S46 (Length 16.1m) and testing | 4d | 2014-11-22 A | 2014-11-26 A | 823B-NB9-Z03-1060 | 100% | 2015-04-01 | 2015-04-09 | 100% | 100% | 823B_AB |  |
| 823B-NB9-Z03-1080 |  | Construction of Manhole S48, S47 and S47A | 14d | 2014-11-27 A | 2015-01-03 A | 823B-NB9-Z03-1060, 823B-NB9-Z03-1070 | 100% | 2015-04-10 | 2015-04-25 | 100% | 100% | 823B_AB |  |
| 823B-NB9-Z03-1090 |  | Backfilling to +16.2mPD and removal of strut | 12d | 2015-01-05 A | 2015-01-10 A | 823B-NB9-Z03-1080 | 100% | 2015-02-09 | 2015-02-25 | 100% | 100% | 823B_AB |  |
| 823B-NB9-Z03-1100 |  | Laying 375mm storm drain from S48 to CP52 (Length 4m) and testing | 4d | 2015-01-12 A | 2015-01-13 A | 823B-NB9-Z03-1090 | 100% | 2015-02-26 | 2015-03-02 | 100% | 100% | 823B_AB |  |
| 823B-NB9-Z03-1110 |  | Laying 300mm storm drain from S47 to CP47 (Length 4.8m) and testing | 4d | 2015-01-14 A | 2015-01-15 A | 823B-NB9-Z03-1090 | 100% | 2015-02-26 | 2015-03-02 | 100% | 100% | 823B_AB |  |
| 823B-NB9-Z03-1120 |  | Laying 375mm storm drain from S47A to CP51 (Length 2.3m) and testing | 4d | 2015-01-16 A | 2015-01-17 A | 823B-NB9-Z03-1090 | 100% | 2015-02-26 | 2015-03-02 | 100% | 100% | 823B_AB |  |
| 823B-NB9-Z03-1130 |  | Construction of Catchpit CP47 | 4d | 2015-01-19 A | 2015-01-20 A | 823B-NB9-Z03-1120, 823B-NB9-Z03-1100, 823B-NB9-Z03-1110 | 100% | 2015-03-03 | 2015-03-06 | 100% | 100% | 823B_AB |  |
| 823B-NB9-Z03-1140 |  | Construction of 300 u-channel | 14d | 2015-01-21 A | 2015-01-27 A | 823B-NB9-Z03-1130 | 100% | 2015-03-07 | 2015-03-23 | 100% | 100% | 823B_AB |  |
| 823B-NB9-Z03-1150 |  | Backfilling to formation level | 8d | 2015-01-28 A | 2015-01-31 A | 823B-NB9-Z03-1140 | 100% | 2015-03-24 | 2015-04-01 | 100% | 100% | 823B_AB |  |
|  | 4 | **Bay 21 to Bay 25 (5 Bay, Length 67.8m)** |  | 2013-12-02 | 2015-02-10 |  |  |  |  |  |  |  |  |
| 823B-NB9-Z04-1010 |  | Excavation and lateral support | 23d | 2013-12-02 A | 2014-05-07 A | 823B-NB9-G-1010 | 100% | 2013-01-29 | 2013-02-27 | 100% | 100% | 823B_AB | -22 |
| 823B-NB9-Z04-1020 |  | Construction of Noise Barrier | 39d | 2013-12-31 A | 2014-05-31 A | 823B-NB9-Z04-1010 | 100% | 2013-02-28 | 2013-04-18 | 100% | 100% | 823B_AB |  |
| 823B-NB9-Z04-1030 |  | Backfilling to storm drain formation | 6d | 2014-11-01 A | 2014-11-07 A | 823B-NB9-Z04-1020 | 100% |  |  | 100% | 100% | 823B_AB |  |
| 823B-NB9-Z04-1040 |  | Laying of 525mm storm drain from S46 to S45 (Length 36.3m) and testing | 4d | 2014-11-08 A | 2014-11-12 A | 823B-NB9-Z04-1030 | 100% |  |  | 100% | 100% | 823B_AB |  |
| 823B-NB9-Z04-1050 |  | Laying of 375mm storm drain from S45 to S44 (Length 36.3m) and testing | 4d | 2014-11-13 A | 2014-11-17 A | 823B-NB9-Z04-1040 | 100% |  |  | 100% | 100% | 823B_AB |  |
| 823B-NB9-Z04-1060 |  | Construction of Manhole S46 and S45 | 7d | 2014-11-18 A | 2014-12-08 A | 823B-NB9-Z04-1050 | 100% | 2014-11-18 | 2014-11-25 | 100% | 100% | 823B_AB |  |
| 823B-NB9-Z04-1070 |  | Backfilling to +16.2mPD and removal of strut | 12d | 2014-12-09 A | 2014-12-22 A | 823B-NB9-Z04-1060 | 100% |  |  | 100% | 100% | 823B_AB |  |
| 823B-NB9-Z04-1080 |  | Laying 300mm storm drain from S46 to CP46 (Length 4.5m) and testing | 4d | 2014-12-23 A | 2014-12-29 A | 823B-NB9-Z04-1070 | 100% |  |  | 100% | 100% | 823B_AB |  |
| 823B-NB9-Z04-1090 |  | Laying 300mm storm drain from S45 to CP45 (Length 4.8m) and testing | 4d | 2014-12-23 A | 2014-12-29 A | 823B-NB9-Z04-1070 | 100% |  |  | 100% | 100% | 823B_AB |  |
| 823B-NB9-Z04-1100 |  | Laying 450mm storm drain from S45 to CP50 (Length 2.3m) and testing | 4d | 2014-12-23 A | 2014-12-29 A | 823B-NB9-Z04-1070 | 100% |  |  | 100% | 100% | 823B_AB |  |
| 823B-NB9-Z04-1110 |  | Construction of Catchpit CP47, CP46 and CP45 | 6d | 2014-12-30 A | 2015-02-03 A | 823B-NB9-Z04-1090, 823B-NB9-Z04-1100, 823B-NB9-Z04-1080 | 100% | 2014-12-30 | 2015-01-06 | 100% | 100% | 823B_AB |  |
| 823B-NB9-Z04-1120 |  | Construction of 300 u-channel | 14d | 2015-01-05 A | 2015-02-07 A | 823B-NB9-Z04-1110 | 100% | 2015-01-06 | 2015-01-21 | 100% | 100% | 823B_AB |  |
| 823B-NB9-Z04-1130 |  | Backfilling to formation level | 8d | 2015-01-12 A | 2015-02-10 A | 823B-NB9-Z04-1120 | 100% | 2015-01-22 | 2015-01-30 | 100% | 100% | 823B_AB |  |

| ID | WBS | Activity | Duration | Start | Finish | Predecessors | Complete | Planned start | Planned finish | user_text6 | user_text7 | 823B_As-built |
| --- | --- | --- | --- | --- | --- | --- | --- | --- | --- | --- | --- | --- |
|  | 4 | **3.5~11.5m High Noise Barrier adjacent to Running and Approach Tunnel (Length 235m)** |  | 2013-08-01 | 2015-08-25 |  |  |  |  |  |  |  |
| 823B-NB12-G-1010 |  | Installation sheet pile from Bay 1 to Bay 9 | 12d | 2013-08-01 A | 2013-08-14 A | 823B-CC-A9-RT-1100 SS+2d | 100% | 2013-06-17 | 2013-06-29 | 100% | 100% | 823B_AB |
| 823B-NB12-G-1020 |  | Excavation and lateral support to +10.00mPD~+19.00mPD from Bay 1 to Bay 4 | 21d | 2013-08-15 A | 2013-09-24 A | 823B-NB12-G-1010 | 100% | 2013-07-02 | 2013-07-25 | 100% | 100% | 823B_AB |
| 823B-NB12-G-1030 |  | Installation sheet pile from Bay 10 to Bay 18 | 29d | 2013-08-15 A | 2013-12-02 A | 823B-CC-A9-RT-1310 | 100% | 2013-10-07 | 2013-11-09 | 100% | 100% | 823B_AB |
| 823B-NB12-G-1040 |  | Excavation and lateral support to +10.00mPD~+19.00mPD from Bay 5 to Bay 18 | 30d | 2013-12-03 A | 2014-11-01 A | 823B-NB12-G-1030 | 100% | 2013-11-11 | 2013-12-14 | 100% | 100% | 823B_AB |
| 823B-NB12-G-1060 |  | Construction road kerb and road pavement,etc. | 47d | 2015-03-02 A | 2015-08-06 A | 823B-NB12-G-1050 | 100% | 2015-09-08 | 2015-11-04 | 100% | 100% | 823B_AB |
| 823B-NB12-G-1070 |  | Removal of sheet pile, laying gully drain and utilities (Bay 1 to Bay 9) | 24d | 2015-03-02 A | 2015-04-21 A | 823B-NB12-Z01-1010 SS+8d | 100% | 2015-03-02 | 2015-03-28 | 100% | 100% | 823B_AB |
| 823B-NB12-G-1050 |  | Removal of sheet pile, laying gully drain and utilities | 83d | 2015-04-01 A | 2015-06-24 A | 823B-NB12-Z02-1040, 823B-NB12-Z03-1040 | 100% | 2015-06-26 | 2015-10-03 | 100% | 100% | 823B_AB |
| 823B-NB12-G-1090 |  | Install 3.5~11.5m high noise barrier panels | 60d | 2015-04-13 A | 2015-08-25 A | 823B-NB9-G-1080, 823B-NB12-Z01-1010, 823B-NB12-Z02-1010, 823B-NB12-Z03-1010 | 100% | 2015-08-06 | 2015-10-16 | 100% | 100% | 823B_AB |
| 823B-NB12-G-1080 |  | Construction road kerb and road pavement,etc. (Bay 1 to Bay 4) | 30d | 2015-06-01 A | 2015-08-13 A | 823B-NB12-G-1070, 823B-NB12-G-1060 | 100% | 2015-07-23 | 2015-08-26 | 100% | 100% | 823B_AB |
|  | 1 | **Bay 1 to Bay 4 (4 Bay, Length 50.5m)** |  | 2013-09-25 | 2014-12-17 |  |  |  |  |  |  |  |
| 823B-NB12-Z01-1010 |  | Construction of Noise Barrier | 32d | 2013-09-25 A | 2013-12-21 A | 823B-NB12-G-1020 | 100% | 2013-07-26 | 2013-08-31 | 100% | 100% | 823B_AB |
| 823B-NB12-Z01-1020 |  | Laying of 375mm dia storm drain from S62 to S60 and testing | 8d | 2014-11-01 A | 2014-11-10 A | 823B-NB12-Z01-1010 SS+5d | 100% |  |  | 100% | 100% | 823B_AB |
| 823B-NB12-Z01-1030 |  | Construction of Manhole S61 | 4d | 2014-11-11 A | 2014-11-14 A | 823B-NB12-Z01-1020 | 100% |  |  | 100% | 100% | 823B_AB |
| 823B-NB12-Z01-1040 |  | Backfilling to ground level and removal of strut | 15d | 2014-12-01 A | 2014-12-17 A | 823B-NB12-Z01-1030 | 100% |  |  | 100% | 100% | 823B_AB |
|  | 2 | **Bay 5 to Bay 11 (7 Bay, Length 90.2m)** |  | 2013-12-02 | 2015-04-27 |  |  |  |  |  |  |  |
| 823B-NB12-Z02-1010 |  | Construction of Noise Barrier | 66d | 2013-12-02 A | 2014-11-01 A | 823B-NB12-G-1040 | 100% | 2013-12-16 | 2014-03-08 | 100% | 100% | 823B_AB |
| 823B-NB12-Z02-1030 |  | Construction of Manhole S61, S60, STMH5, S59A and S59 | 28d | 2014-03-01 A | 2014-11-01 A | 823B-NB12-Z02-1020 | 100% | 2014-10-31 | 2014-12-02 | 100% | 100% | 823B_AB |
| 823B-NB12-Z02-1020 |  | Laying of 375mm, 675mm and 750mm dia storm drain from S62 to S59 and testing | 20d | 2014-11-01 A | 2015-04-10 A | 823B-NB12-Z02-1010 | 100% | 2015-01-14 | 2015-02-05 | 100% | 100% | 823B_AB |
| 823B-NB12-Z02-1040 |  | Backfilling to ground level and removal of strut | 23d | 2015-03-07 A | 2015-04-27 A | 823B-NB12-Z02-1030 | 100% | 2015-03-07 | 2015-04-02 | 100% | 100% | 823B_AB |
|  | 3 | **Bay 12 to Bay 18 (7 Bay, Length 94.3m)** |  | 2014-10-20 | 2015-05-20 |  |  |  |  |  |  |  |
| 823B-NB12-Z03-1010 |  | Construction of Noise Barrier | 66d | 2014-10-20 A | 2015-04-30 A | 823B-NB12-G-1040 | 100% | 2014-11-20 | 2015-02-07 | 100% | 100% | 823B_AB |
| 823B-NB12-Z03-1020 |  | Laying of 375mm dia storm drain from S59 to S55 and testing | 20d | 2015-02-02 A | 2015-05-07 A | 823B-NB12-Z03-1010 | 100% | 2015-03-09 | 2015-03-31 | 100% | 100% | 823B_AB |
| 823B-NB12-Z03-1030 |  | Construction of Manhole S58, S57 and S56 | 21d | 2015-02-23 A | 2015-05-13 A | 823B-NB12-Z03-1020 | 100% | 2015-04-01 | 2015-04-29 | 100% | 100% | 823B_AB |
| 823B-NB12-Z03-1040 |  | Backfilling to ground level and removal of strut | 25d | 2015-03-02 A | 2015-05-20 A | 823B-NB12-Z03-1030 | 100% | 2015-04-30 | 2015-05-30 | 100% | 100% | 823B_AB |

| ID | WBS | Activity | Duration | Start | Finish | Predecessors | Complete | Planned start | Planned finish | Resources | user_text6 | user_text7 | 823B_As-built | PRELIM |
| --- | --- | --- | --- | --- | --- | --- | --- | --- | --- | --- | --- | --- | --- | --- |
|  | 09 | **RETAINING WALLS** |  | 2013-05-07 | 2015-03-17 |  |  |  |  |  |  |  |  |  |
| 823B-RWS-1040 |  | Construct Retaining Walls 7 | 45d | 2013-05-07 A | 2015-03-13 A | 823B-CC-A10-RT-1030, 823B-CC-A10-RT-1040 SS | 100% | 2013-05-07 | 2013-06-29 | Concrete [536 Cu m] | 100% | 100% | 823B_AB |  |
| 823B-RWS-1010 |  | Construct Retaining Walls 6 | 80d | 2013-05-09 A | 2015-03-17 A | 823B-ERS-A6-DW-1010, 823B-CC-A7-DW-1010, 823B-CC-A7-ELS-1050 SS, 823B-NB9-Z02-1020 | 100% | 2013-05-09 | 2013-08-13 | Concrete [1592 Cu m] | 100% | 100% | 823B_AB | H002 |
| 823B-RWS-1030 |  | Construct Retaining Walls 3 | 45d | 2013-06-03 A | 2013-08-01 A | 823B-H-RSP-2010 | 100% | 2013-12-06 | 2014-01-30 | Concrete [561 Cu m] | 100% | 100% | 823B_AB |  |
| 823B-RWS-1050 |  | Construct Retaining Walls 9 | 30d | 2013-12-02 A | 2014-06-03 A | 823B-KTR-1020, 823B-RWS-1020 | 100% | 2013-12-21 | 2014-01-28 | Concrete [140 Cu m] | 100% | 100% | 823B_AB |  |
| 823B-RWS-1020 |  | Construct Retaining Walls 1 | 32d | 2014-12-01 A | 2015-03-07 A | 823B-KTR-1020 | 100% | 2015-01-02 | 2015-02-07 | Concrete [191 Cu m] | 100% | 100% | 823B_AB |  |
|  | 10 | **OHL MAST FOUNDATION** |  | 2013-02-14 | 2013-09-28 |  |  |  |  |  |  |  |  |  |
| 823B-STR-1030 |  | Overheal line mast foundations - PA1 | 75d | 2013-02-14 A | 2013-08-09 A | 823B-H-SLS-S-1150 SS+6d, 823B-H-SLS-S-1160 SS+6d | 100% | 2013-02-14 | 2013-05-18 | Concrete [412 Cu m] | 100% | 100% | 823B_AB | H002 |
| 823B-STR-1010 |  | Overheal line mast foundations - PA3.1 | 97d | 2013-04-16 A | 2013-09-28 A | 823B-NB10-G-1030 | 100% | 2013-04-16 | 2013-08-10 | Concrete [237 Cu m] | 100% | 100% | 823B_AB | H002 |
| 823B-STR-1020 |  | Overheal line mast foundations - PA2.1 | 85d | 2013-04-16 A | 2013-09-28 A | 823B-NB10-G-1030 | 100% | 2013-04-16 | 2013-07-27 | Concrete [339 Cu m] | 100% | 100% | 823B_AB | H002 |
|  | 11 | **SHEK KONG STABLING AND SIDING WORKS** |  | 2013-04-16 | 2015-01-14 |  |  |  |  |  |  |  |  |  |
| 823B-SSS-1030 |  | Area PA 3.1 Formation & Sub-ballast | 97d | 2013-04-16 A | 2014-12-12 A | 823B-SFE-1020, 823B-NB10-G-1010 SS, 823B-NB10-G-1030 | 100% | 2013-04-16 | 2013-08-10 |  | 100% | 100% | 823B_AB | H002 |
| 823B-SSS-1010 |  | Area PA 2.1 Formation & Sub-ballast | 52d | 2013-05-07 A | 2015-01-14 A | 823B-SFE-1020 SS+44d, 823B-RWS-1040 SS | 100% | 2013-05-07 | 2013-07-09 |  | 100% | 100% | 823B_AB | H002 |
| 823B-SSS-1040 |  | Area PA 3.2 Formation & Sub-ballast | 53d | 2013-10-02 A | 2014-12-12 A | 823B-ERS-A1-RT-1020, 823B-ERS-A1-RT-1050, 823B-ERS-A1-RT-1090, 823B-ERS-A1-RT-1130, 823B-ERS-A1-RT-1170, 823B-ERS-A2-RT-1020, 823B-ERS-A2-RT-1060, 823B-ERS-A2-RT-1210, 823B-ERS-A2-RT-1220, 823B-ERS-A2-RT-1250, 823B-ERS-A2-RT-2030, 823B-ERS-A2-RT-2070, 823B-ERS-A2-RT-3030, 823B-ERS-A2-RT-3060, 823B-ERS-A2-RT-3090, 823B-ERS-A3-RT-1030, 823B-ERS-A3-RT-1070, 823B-ERS-A3-RT-1110, 823B-ERS-A3-RT-1150, 823B-ERS-A3-RT-1190, 823B-ERS-A4-RT-1050, 823B-ERS-A4-RT-1020, 823B-ERS-A4-RT-1150, 823B-ERS-A4-RT-1110, 823B-ERS-A5-RT-1100, 823B-ERS-A5-RT-1060, 823B-ERS-A5-RT-1020, 823B-ERS-A5-RT-1210, 823B-ERS-A5-RT-1180, 823B-ERS-A5-RT-1140, 823B-ERS-A6-RT-1030, 823B-ERS-A6-RT-1150, 823B-ERS-A6-RT-1220, 823B-ERS-A6-RT-1280, 823B-ERS-A6-RT-1430, 823B-ERS-A6-RT-1490, 823B-ERS-A6-RT-1670, 823B-ERS-A6-RT-1610, 823B-ERS-A6-RT-1560, 823B-NB10-Z07-1080 | 100% | 2013-09-13 | 2013-11-16 |  | 100% | 100% | 823B_AB | H002 |
| 823B-SSS-1020 |  | Area PA 2.2 Formation & Sub-ballast | 24d | 2014-08-01 A | 2014-08-28 A | 823B-ERS-A6-RT-1440, 823B-ERS-A6-RT-1500, 823B-ERS-A6-RT-1350 | 100% |  |  |  | 100% | 100% | 823B_AB | H002 |
|  | 12 | **SEWAGE PUMPING STATION AND SEWAGE HOLDING TANK** |  | 2012-12-01 | 2013-07-10 |  |  |  |  |  |  |  |  |  |
|  | 1 | **Sewage Holding Tank** |  | 2012-12-01 | 2013-07-10 |  |  |  |  |  |  |  |  |  |
| 823B-J-SHT-1000 |  | Sheet piling | 4d | 2012-12-01 A | 2012-12-05 A | 823B-H-SHK-Z1-1370, 823B-H-SHK-Z2-1330 | 100% |  |  | Activity Weighting [80] | 100% | 100% | 823B_AB |  |
| 823B-J-SHT-1010 |  | Excavation | 21d | 2012-12-06 A | 2013-01-02 A | 823B-J-SHT-1000 | 100% |  |  | Activity Weighting [481] | 100% | 100% | 823B_AB |  |
| 823B-J-SHT-1020 |  | Blinding concrete | 2d | 2013-01-03 A | 2013-01-04 A | 823B-J-SHT-1010 | 100% |  |  | Activity Weighting [27] | 100% | 100% | 823B_AB |  |
| 823B-J-SHT-1030 |  | Base slab | 16d | 2013-01-05 A | 2013-01-23 A | 823B-J-SHT-1020 | 100% |  |  | Activity Weighting [374] | 100% | 100% | 823B_AB |  |
| 823B-J-SHT-1040 |  | Walls | 16d | 2013-01-24 A | 2013-02-14 A | 823B-J-SHT-1030 | 100% |  |  | Activity Weighting [374] | 100% | 100% | 823B_AB |  |
| 823B-J-SHT-1050 |  | Columns | 12d | 2013-02-15 A | 2013-02-28 A | 823B-J-SHT-1040 | 100% |  |  | Activity Weighting [267] | 100% | 100% | 823B_AB |  |
| 823B-J-SHT-1060 |  | Roof | 27d | 2013-03-01 A | 2013-04-05 A | 823B-J-SHT-1050 | 100% |  |  | Activity Weighting [642] | 100% | 100% | 823B_AB |  |
| 823B-J-SHT-1070 |  | Manholes | 12d | 2013-04-06 A | 2013-04-19 A | 823B-J-SHT-1060 | 100% |  |  | Activity Weighting [267] | 100% | 100% | 823B_AB |  |
| 823B-J-SHT-1080 |  | Waterproofing | 45d | 2013-04-20 A | 2013-06-14 A | 823B-J-SHT-1070 | 100% |  |  | Activity Weighting [1070] | 100% | 100% | 823B_AB |  |
| 823B-J-SHT-1100 |  | Cast iron vent pipe | 7d | 2013-04-20 A | 2013-04-27 A | 823B-J-SHT-1070 | 100% |  |  | Activity Weighting [160] | 100% | 100% | 823B_AB |  |
| 823B-J-SHT-1090 |  | Backfillling | 14d | 2013-04-26 A | 2013-05-13 A | 823B-J-SHT-1080 SS+5d, 823B-J-SHT-1100 FF | 100% |  |  | Activity Weighting [321] | 100% | 100% | 823B_AB |  |
| 823B-J-SHT-1110 |  | Cat ladders and other ancilliary works | 14d | 2013-06-24 A | 2013-07-10 A | 823B-J-SHT-1080 FS+7d | 100% |  |  | Activity Weighting [321] | 100% | 100% | 823B_AB |  |

| ID | WBS | Activity | Duration | Start | Finish | Predecessors | Complete | Planned start | Planned finish | Resources | user_text6 | user_text7 | 823B_As-built |
| --- | --- | --- | --- | --- | --- | --- | --- | --- | --- | --- | --- | --- | --- |
|  | 2 | **Foulwater Sump Pit (FSP No. 2)** |  | 2012-12-06 | 2013-03-13 |  |  |  |  |  |  |  |  |
| 823B-J-SPS-1000 |  | Excavation | 5d | 2012-12-06 A | 2012-12-11 A | 823B-J-SHT-1010 SS | 100% |  |  | Activity Weighting [107] | 100% | 100% | 823B_AB |
| 823B-J-SPS-1010 |  | Blinding | 2d | 2012-12-12 A | 2012-12-13 A | 823B-J-SPS-1000 | 100% |  |  | Activity Weighting [27] | 100% | 100% | 823B_AB |
| 823B-J-SPS-1020 |  | Base slab | 7d | 2012-12-14 A | 2012-12-21 A | 823B-J-SPS-1010 | 100% |  |  | Activity Weighting [160] | 100% | 100% | 823B_AB |
| 823B-J-SPS-1030 |  | Wall | 21d | 2012-12-22 A | 2013-01-18 A | 823B-J-SPS-1020 | 100% |  |  | Activity Weighting [481] | 100% | 100% | 823B_AB |
| 823B-J-SPS-1040 |  | Roof | 7d | 2013-01-19 A | 2013-01-26 A | 823B-J-SPS-1030 | 100% |  |  | Activity Weighting [160] | 100% | 100% | 823B_AB |
| 823B-J-SPS-1050 |  | Base slab (gate valves pit) | 7d | 2013-01-19 A | 2013-01-26 A | 823B-J-SPS-1030 | 100% |  |  | Activity Weighting [160] | 100% | 100% | 823B_AB |
| 823B-J-SPS-1060 |  | Walls (gate valves pit) | 7d | 2013-01-28 A | 2013-02-04 A | 823B-J-SPS-1050 | 100% |  |  | Activity Weighting [160] | 100% | 100% | 823B_AB |
| 823B-J-SPS-1070 |  | Roof (gate valves pit) | 7d | 2013-02-05 A | 2013-02-15 A | 823B-J-SPS-1060 | 100% |  |  | Activity Weighting [160] | 100% | 100% | 823B_AB |
| 823B-J-SPS-1080 |  | Waterproofing | 7d | 2013-02-06 A | 2013-02-16 A | 823B-J-SPS-1040 FS+8d | 100% |  |  | Activity Weighting [160] | 100% | 100% | 823B_AB |
| 823B-J-SPS-1090 |  | Backfilling | 4d | 2013-02-16 A | 2013-02-20 A | 823B-J-SPS-1040, 823B-J-SPS-1070, 823B-J-SPS-1080 FF | 100% |  |  | Activity Weighting [80] | 100% | 100% | 823B_AB |
| 823B-J-SPS-1100 |  | Cat ladders and other ancilliary works | 14d | 2013-02-26 A | 2013-03-13 A | 823B-J-SPS-1070, 823B-J-SPS-1080 FS+7d | 100% |  |  | Activity Weighting [321] | 100% | 100% | 823B_AB |
|  | K | **TO KAU WAN STOCKPILING FACILITIES** |  | 2010-10-25 | 2012-01-13 |  |  |  |  |  |  |  |  |
| 823B-K-TKW-1010 |  | Design for receiving and stockpiling the spoil | 12d | 2010-10-25 A | 2010-11-06 A | 823B-CD-10 | 100% |  |  |  |  |  | 823B_AB |
| 823B-K-TKW-1030 |  | Initial Site Survey (PS4.1.2) | 12d | 2010-10-28 A | 2010-11-10 A | 823B-AC-0230, 823B-AC-0235 | 100% |  |  |  |  |  | 823B_AB |
| 823B-K-TKW-1050 |  | Erection of Hoarding | 12d | 2010-10-28 A | 2010-11-10 A | 823B-AC-0230, 823B-AC-0235 | 100% |  |  | Labour [18 NO]; Labour [1728 h] |  |  | 823B_AB |
| 823B-K-TKW-1020 |  | Approval of design for receiving and stockpiling the spoil | 24d | 2010-11-08 A | 2010-12-04 A | 823B-K-TKW-1010 | 100% |  |  |  |  |  | 823B_AB |
| 823B-K-TKW-1040 |  | Initial Site Survey Report (PS4.1.5) | 14d | 2010-11-11 A | 2010-11-26 A | 823B-K-TKW-1030 | 100% |  |  |  |  |  | 823B_AB |
| 823B-K-TKW-1060 |  | Hydrographic Survey prior to construction works (PS4.3.1) | 24d | 2010-11-15 A | 2010-12-11 A | 823B-K-TKW-1020 SS+6d | 100% |  |  |  |  |  | 823B_AB |
| 823B-K-TKW-1070 |  | Obtain Statutory Approval | 30d | 2010-12-05 A | 2011-01-03 A | 823B-K-TKW-1020 | 100% | 2010-12-06 | 2011-01-12 |  |  |  | 823B_AB |
| 823B-K-TKW-1080 |  | Construct all facilities and ready for receiving spoil | 30d | 2011-01-04 A | 2011-02-10 A | 823B-K-TKW-1020, 823B-K-TKW-1070, 823B-K-TKW-1040, 823B-K-TKW-1050, 823B-K-TKW-1060, 823B-AC-0230, 823B-AC-0235 | 100% |  |  |  |  |  | 823B_AB |
| 823B-K-TKW-1090 |  | Obtain Engineer's confirmation of satisfatory management of stockpiling facility | 85d | 2011-02-11 A | 2011-05-27 A | 823B-K-TKW-1080 | 100% |  |  |  |  |  | 823B_AB |
| 823B-K-TKW-1100 |  | Approval of interim survey to demonstrate stockpiling minimum of 250,000 m³ spoil | 93d | 2011-05-28 A | 2011-09-16 A | 823B-K-TKW-1090 | 100% |  |  |  |  |  | 823B_AB |
| 823B-K-TKW-1110 |  | Approval of final survey to demonstrate stockpiling minimum of 350,000 m³ spoil | 71d | 2011-09-17 A | 2011-12-10 A | 823B-K-TKW-1100 | 100% |  |  |  |  |  | 823B_AB |
| 823B-K-TKW-1130 |  | Hydrographic Survey prior to handover of Works Area (PS4.3.1) | 28d | 2011-12-09 A | 2012-01-13 A | 823B-K-TKW-1110 SS+69d | 100% |  |  |  |  |  | 823B_AB |
| 823B-K-TKW-1120 |  | Erosion protection measures; drainage system; and remove all temporary facilities as required by the Engineer | 26d | 2011-12-12 A | 2012-01-13 A | 823B-K-TKW-1110 | 100% |  |  |  |  |  | 823B_AB |

## Activity codes

| Code | Value | Meaning |
| --- | --- | --- |
| 823B_As-built | 823B_AB | 823B As-built |
| 823B_As-built-verified | 823B_AB | 823B As-built verified |
| PRELIM | H002 | For Print Out |
