# 820 As-built Programme

Schedule from Primavera P6, 2010-05-03 to 2016-05-10, data date 2015-05-31, A marks actual dates.
This as-built is using the progressed / master programme under the Contractor's Monthly Progress Report (May / 2015). Baseline is RMP ver. F r1 (SA3)
Must finish by 2016-05-31

## Calendars

- Cal 2: Mon-Sun 08:00-12:00, 13:00-17:00. Exceptions (off unless hours are given): 2014-10-01 to 2014-10-02 08:00-12:00, 13:00-17:00.
- Cal 1: Mon-Sat 08:00-12:00, 13:00-17:00; Sun off. Exceptions (off unless hours are given): 2010-05-10, 2010-05-20 to 2010-05-21, 2010-06-10, 2010-06-16, 2010-06-18, 2010-07-01, 2010-07-09, 2010-07-20, 2010-08-10, 2010-08-20, 2010-09-10, 2010-09-13, 2010-09-20, 2010-09-23 08:00-12:00, 13:00-17:00, 2010-10-01, 2010-10-15 08:00-12:00, 13:00-17:00, 2010-10-16, 2010-12-22 08:00-12:00, 13:00-17:00, 2010-12-24 08:00-12:00, 13:00-17:00, 2010-12-25, 2010-12-27, 2010-12-31 to 2011-01-01, 2011-01-31, 2011-02-01 to 2011-02-02 08:00-12:00, 13:00-17:00, 2011-02-03 to 2011-02-05, 2011-04-05, 2011-04-08, 2011-04-20, 2011-04-22 to 2011-04-23, 2011-04-25, 2011-05-02, 2011-05-09 to 2011-05-10, 2011-05-20, 2011-06-06, 2011-06-10, 2011-06-20, 2011-07-01, 2011-07-08 08:00-12:00, 13:00-17:00, 2011-07-09, 2011-07-20, 2011-08-10, 2011-08-19, 2011-09-09, 2011-09-13, 2011-09-20, 2011-09-30 08:00-12:00, 13:00-17:00, 2011-10-01, 2011-10-05, 2011-12-24, 2011-12-26, 2011-12-27 08:00-12:00, 13:00-17:00, 2012-01-02, 2012-01-23 to 2012-01-25, 2012-01-26 to 2012-01-27 08:00-12:00, 13:00-17:00, 2012-04-04, 2012-04-06 to 2012-04-07, 2012-04-09 to 2012-04-10, 2012-04-12, 2012-04-20, 2012-04-27 08:00-12:00, 13:00-17:00, 2012-04-28, 2012-05-01, 2012-05-10, 2012-05-18, 2012-06-08, 2012-06-20, 2012-06-22 08:00-12:00, 13:00-17:00, 2012-06-23, 2012-07-02, 2012-07-10, 2012-07-20, 2012-08-10, 2012-08-20, 2012-09-10, 2012-09-20, 2012-10-01 to 2012-10-02, 2012-10-23, 2012-12-25 to 2012-12-26, 2013-01-01, 2013-02-09, 2013-02-11 to 2013-02-12, 2013-02-13 to 2013-02-15 08:00-12:00, 13:00-17:00, 2013-03-29 to 2013-03-30, 2013-04-01, 2013-04-03 08:00-12:00, 13:00-17:00, 2013-04-04, 2013-04-10, 2013-04-19, 2013-05-01, 2013-05-10, 2013-05-17, 2013-05-20, 2013-06-10, 2013-06-12, 2013-06-20, 2013-07-01, 2013-07-10, 2013-07-19, 2013-08-09, 2013-08-20, 2013-09-10, 2013-09-18, 2013-09-19 08:00-12:00, 13:00-17:00, 2013-09-20, 2013-10-01, 2013-10-14, 2013-12-25 to 2013-12-26, 2014-01-01, 2014-01-31 to 2014-02-01, 2014-02-03, 2014-02-04 to 2014-02-07 08:00-12:00, 13:00-17:00, 2014-04-04 08:00-12:00, 13:00-17:00, 2014-04-05, 2014-04-10, 2014-04-16, 2014-04-17 08:00-12:00, 13:00-17:00, 2014-04-18, 2014-04-21, 2014-05-01, 2014-05-06, 2014-05-09, 2014-05-20, 2014-06-02, 2014-06-10, 2014-06-20, 2014-07-01, 2014-07-10, 2014-07-18, 2014-08-08, 2014-08-20, 2014-09-09, 2014-09-10 08:00-12:00, 13:00-17:00, 2014-09-11, 2014-09-19, 2014-10-01 to 2014-10-02, 2014-12-25 to 2014-12-26, 2015-01-01, 2015-02-16 to 2015-02-18 08:00-12:00, 13:00-17:00, 2015-02-19 to 2015-02-21, 2015-04-03 to 2015-04-04, 2015-04-06 to 2015-04-07, 2015-04-10, 2015-04-20, 2015-05-01, 2015-05-08, 2015-05-20, 2015-05-25, 2015-06-10, 2015-06-19, 2015-07-01, 2015-07-10, 2015-07-20, 2015-08-10, 2015-08-20, 2015-09-10, 2015-09-18, 2015-09-28, 2015-10-01, 2015-10-21, 2015-12-25, 2016-01-01, 2016-02-08 to 2016-02-10, 2016-03-25, 2016-03-28, 2016-04-04, 2016-05-02.
- Cal 3: Mon-Sat 08:00-12:00, 13:00-17:00; Sun off. Exceptions (off unless hours are given): 2010-05-21, 2010-06-16, 2010-07-01, 2010-09-23, 2010-10-01, 2010-10-15 08:00-12:00, 13:00-17:00, 2010-10-16, 2010-12-24 08:00-12:00, 13:00-17:00, 2010-12-25, 2010-12-27, 2010-12-31, 2011-01-03 to 2011-01-05, 2011-01-06 to 2011-01-07 08:00-12:00, 13:00-17:00, 2011-04-05, 2011-04-22 to 2011-04-23, 2011-04-25, 2011-05-02, 2011-05-10, 2011-06-06, 2011-07-01, 2011-09-13, 2011-09-30 08:00-12:00, 13:00-17:00, 2011-10-01, 2011-10-05, 2011-12-24, 2011-12-26, 2011-12-27 08:00-12:00, 13:00-17:00, 2012-01-02, 2012-01-23 to 2012-01-25, 2012-01-26 to 2012-01-27 08:00-12:00, 13:00-17:00, 2012-04-04, 2012-04-06 to 2012-04-07, 2012-04-09, 2012-04-27 08:00-12:00, 13:00-17:00, 2012-04-28, 2012-05-01, 2012-06-22 08:00-12:00, 13:00-17:00, 2012-06-23, 2012-07-02, 2012-10-01 to 2012-10-02, 2012-10-23, 2012-12-25 to 2012-12-26, 2013-01-01, 2013-02-11 to 2013-02-13, 2013-02-14 to 2013-02-15 08:00-12:00, 13:00-17:00, 2013-03-29 to 2013-03-30, 2013-04-01, 2013-04-04, 2013-05-01, 2013-05-17, 2013-06-12, 2013-07-01, 2013-09-20, 2013-10-01, 2013-10-14, 2013-12-25 to 2013-12-26, 2014-01-01, 2014-01-31 to 2014-02-01, 2014-02-03, 2014-02-04 to 2014-02-07 08:00-12:00, 13:00-17:00, 2014-04-04 to 2014-04-05, 2014-04-18 to 2014-04-19, 2014-04-21, 2014-05-01, 2014-05-06, 2014-06-02, 2014-07-01, 2014-09-09, 2014-10-01 to 2014-10-02, 2014-12-25 to 2014-12-26, 2015-01-01, 2015-02-16 to 2015-02-18 08:00-12:00, 13:00-17:00, 2015-02-19 to 2015-02-21, 2015-04-03 to 2015-04-04, 2015-04-06 to 2015-04-07, 2015-05-01, 2015-05-25, 2015-06-19 08:00-12:00, 13:00-17:00, 2015-06-20, 2015-07-01, 2015-09-28, 2015-10-01, 2015-10-21, 2015-12-25 to 2015-12-26, 2016-01-01, 2016-02-08 to 2016-02-10, 2016-03-25, 2016-03-28, 2016-04-04, 2016-05-02.
- Cal9(S)Pt25: Mon-Sat 08:00-12:00, 13:00-17:00; Sun off. Exceptions (off unless hours are given): 2010-05-10, 2010-05-20 to 2010-05-21, 2010-06-10, 2010-06-16, 2010-06-18, 2010-07-01, 2010-07-09, 2010-07-20, 2010-08-10, 2010-08-20, 2010-09-10, 2010-09-20, 2010-09-23, 2010-10-01, 2010-10-15, 2010-12-22, 2010-12-24, 2010-12-27, 2010-12-31, 2011-01-31 to 2011-02-04, 2011-04-05, 2011-04-08, 2011-04-20, 2011-05-02, 2011-05-09 to 2011-05-10, 2011-05-20, 2011-06-06, 2011-06-10, 2011-06-20, 2011-07-01, 2011-07-08, 2011-07-20, 2011-08-10, 2011-08-19, 2011-09-09, 2011-09-13, 2011-09-20, 2011-09-30, 2011-10-05, 2011-12-26 to 2011-12-27, 2012-01-02, 2012-01-07, 2012-01-23 to 2012-01-25, 2012-01-26 to 2012-01-27 08:00-12:00, 13:00-17:00, 2012-04-06, 2012-04-09 to 2012-04-10, 2012-04-20, 2012-04-27, 2012-05-01, 2012-05-10, 2012-05-18, 2012-06-08, 2012-06-20, 2012-06-22, 2012-07-02, 2012-07-10, 2012-07-20, 2012-08-10, 2012-08-20, 2012-09-10, 2012-09-20, 2012-09-28 to 2012-09-29 08:00-12:00, 13:00-17:00, 2012-10-01 to 2012-10-02, 2012-10-03 to 2012-10-06 08:00-12:00, 13:00-17:00, 2012-10-08 to 2012-10-13 08:00-12:00, 13:00-17:00, 2012-10-15 to 2012-10-18 08:00-12:00, 13:00-17:00, 2012-10-23, 2012-12-25 to 2012-12-26, 2013-01-01, 2013-01-07 to 2013-01-12, 2013-01-14 to 2013-01-19, 2013-01-21 to 2013-01-26, 2013-01-28 to 2013-02-02, 2013-02-04 to 2013-02-09, 2013-02-11 to 2013-02-13, 2013-02-14 to 2013-02-15 08:00-12:00, 13:00-17:00, 2013-03-29 to 2013-03-30, 2013-04-01, 2013-04-03 08:00-12:00, 13:00-17:00, 2013-04-04, 2013-04-10, 2013-04-19 08:00-12:00, 13:00-17:00, 2013-04-20, 2013-05-01, 2013-05-10, 2013-05-17, 2013-05-20, 2013-06-10, 2013-06-12, 2013-06-20, 2013-07-01, 2013-07-10, 2013-07-19, 2013-08-09, 2013-08-20, 2013-09-10, 2013-09-19 to 2013-09-20, 2013-10-01, 2013-10-12 08:00-12:00, 13:00-17:00, 2013-10-14, 2013-10-15 to 2013-10-19 08:00-12:00, 13:00-17:00, 2013-10-21 to 2013-10-26 08:00-12:00, 13:00-17:00, 2013-10-28 to 2013-10-31 08:00-12:00, 13:00-17:00, 2013-11-01, 2013-12-05 to 2013-12-07, 2013-12-09 to 2013-12-14, 2013-12-16 to 2013-12-21, 2013-12-23 to 2013-12-26, 2014-01-01, 2014-01-31 to 2014-02-01, 2014-02-03, 2014-02-04 to 2014-02-07 08:00-12:00, 13:00-17:00, 2014-04-04, 2014-04-10, 2014-04-17 to 2014-04-18, 2014-04-21, 2014-05-01, 2014-05-06, 2014-05-09, 2014-05-20, 2014-06-02, 2014-06-10, 2014-06-20, 2014-07-01, 2014-07-10, 2014-07-18, 2014-08-08, 2014-08-20, 2014-09-09 to 2014-09-10, 2014-09-19, 2014-10-01 to 2014-10-02, 2014-12-25 to 2014-12-26, 2015-01-01, 2015-02-16 to 2015-02-20, 2015-04-03, 2015-04-06 to 2015-04-07, 2015-04-10, 2015-04-20, 2015-05-01, 2015-05-08, 2015-05-20, 2015-05-25, 2015-06-10, 2015-06-19, 2015-07-01, 2015-07-10, 2015-07-20, 2015-08-10, 2015-08-20, 2015-09-10, 2015-09-18, 2015-09-28, 2015-10-01, 2015-10-21, 2015-12-25, 2016-01-01, 2016-02-08 to 2016-02-10, 2016-03-25, 2016-03-28, 2016-04-04, 2016-05-02.
- Cal9(N) (+235m): Mon-Sat 08:00-12:00, 13:00-17:00; Sun off. Exceptions (off unless hours are given): 2010-05-10, 2010-05-20 to 2010-05-21, 2010-06-10, 2010-06-16, 2010-06-18, 2010-07-01, 2010-07-09, 2010-07-20, 2010-08-10, 2010-08-20, 2010-09-10, 2010-09-20, 2010-09-23, 2010-10-01, 2010-10-15, 2010-12-22, 2010-12-24, 2010-12-27, 2010-12-31, 2011-01-31 to 2011-02-04, 2011-04-05, 2011-04-08, 2011-04-20, 2011-05-02, 2011-05-09 to 2011-05-10, 2011-05-20, 2011-06-06, 2011-06-10, 2011-06-20, 2011-07-01, 2011-07-08, 2011-07-20, 2011-08-10, 2011-08-19, 2011-09-09, 2011-09-13, 2011-09-20, 2011-09-30, 2011-10-05, 2011-12-26 to 2011-12-27, 2012-01-02, 2012-01-23 to 2012-01-27, 2012-04-06, 2012-04-09, 2012-04-10 08:00-12:00, 13:00-17:00, 2012-04-20 08:00-12:00, 13:00-17:00, 2012-04-27, 2012-05-01, 2012-05-10 08:00-12:00, 13:00-17:00, 2012-05-18 08:00-12:00, 13:00-17:00, 2012-06-08 08:00-12:00, 13:00-17:00, 2012-06-20 08:00-12:00, 13:00-17:00, 2012-06-22, 2012-07-02, 2012-07-10 08:00-12:00, 13:00-17:00, 2012-07-20 08:00-12:00, 13:00-17:00, 2012-08-10 08:00-12:00, 13:00-17:00, 2012-08-20 08:00-12:00, 13:00-17:00, 2012-09-10, 2012-09-11 to 2012-09-15 08:00-12:00, 13:00-17:00, 2012-09-17 to 2012-09-19 08:00-12:00, 13:00-17:00, 2012-09-20, 2012-09-21 to 2012-09-22 08:00-12:00, 13:00-17:00, 2012-09-24 08:00-12:00, 13:00-17:00, 2012-10-01 to 2012-10-02, 2012-10-23, 2012-10-31 to 2012-11-03, 2012-11-05 to 2012-11-10, 2012-11-12 to 2012-11-17, 2012-11-19 to 2012-11-24, 2012-11-26 to 2012-12-01, 2012-12-03 to 2012-12-08, 2012-12-10 to 2012-12-14, 2012-12-21, 2012-12-25 to 2012-12-26, 2013-01-01, 2013-02-11 to 2013-02-15, 2013-03-29, 2013-04-01, 2013-04-03, 2013-04-10, 2013-04-19, 2013-05-01, 2013-05-10, 2013-05-17, 2013-05-20, 2013-06-10, 2013-06-12, 2013-06-20, 2013-07-01, 2013-07-10, 2013-07-19, 2013-08-09, 2013-08-20, 2013-08-30 to 2013-08-31, 2013-09-02 to 2013-09-07 08:00-12:00, 13:00-17:00, 2013-09-09 08:00-12:00, 13:00-17:00, 2013-09-10, 2013-09-11 to 2013-09-14 08:00-12:00, 13:00-17:00, 2013-09-16 to 2013-09-18 08:00-12:00, 13:00-17:00, 2013-09-19 to 2013-09-20, 2013-10-01, 2013-10-07 to 2013-10-12, 2013-10-14 to 2013-10-19, 2013-10-21 to 2013-10-26, 2013-10-28 to 2013-11-02, 2013-11-04 to 2013-11-09, 2013-11-11 to 2013-11-16, 2013-11-18 to 2013-11-20, 2013-12-25 to 2013-12-26, 2014-01-01, 2014-01-31 to 2014-02-01, 2014-02-03, 2014-02-04 to 2014-02-07 08:00-12:00, 13:00-17:00, 2014-02-26 to 2014-02-28, 2014-04-04 08:00-12:00, 13:00-17:00, 2014-04-05, 2014-04-10, 2014-04-17 to 2014-04-19, 2014-04-21, 2014-05-01, 2014-05-06, 2014-05-09, 2014-05-20, 2014-06-02, 2014-06-10, 2014-06-20, 2014-07-01, 2014-07-10, 2014-07-18, 2014-08-08, 2014-08-20, 2014-09-09 to 2014-09-10, 2014-09-19, 2014-10-01 to 2014-10-02, 2014-12-25 to 2014-12-26, 2015-01-01, 2015-02-16 to 2015-02-20, 2015-04-03, 2015-04-06 to 2015-04-07, 2015-04-10, 2015-04-20, 2015-05-01, 2015-05-08, 2015-05-20, 2015-05-25, 2015-06-10, 2015-06-19, 2015-07-01, 2015-07-10, 2015-07-20, 2015-08-10, 2015-08-20, 2015-09-10, 2015-09-18, 2015-09-28, 2015-10-01, 2015-10-21, 2015-12-25.
- Cal 6: Mon-Sun 08:00-12:00, 13:00-17:00. Exceptions (off unless hours are given): 2010-05-03 to 2010-07-31, 2010-08-02 to 2010-10-31, 2010-11-07, 2010-11-14, 2010-11-21, 2010-11-28, 2010-12-05, 2010-12-12, 2010-12-19, 2010-12-22, 2010-12-25 to 2010-12-27, 2011-01-01 to 2011-01-02, 2011-01-09, 2011-01-16, 2011-01-23, 2011-01-30, 2011-01-31 to 2011-02-02 08:00-12:00, 13:00-17:00, 2011-02-03 to 2011-02-06, 2011-02-13, 2011-02-20, 2011-02-27, 2011-03-06, 2011-03-13, 2011-03-20, 2011-03-27, 2011-04-01 to 2011-10-31, 2011-11-06, 2011-11-13, 2011-11-20, 2011-11-27, 2011-12-04, 2011-12-11, 2011-12-18, 2011-12-25 to 2011-12-27, 2012-01-01 to 2012-01-02, 2012-01-08, 2012-01-15, 2012-01-22 to 2012-01-25, 2012-01-26 to 2012-01-28 08:00-12:00, 13:00-17:00, 2012-01-29, 2012-02-05, 2012-02-12, 2012-02-19, 2012-02-26, 2012-03-04, 2012-03-11, 2012-03-18, 2012-03-25, 2012-04-01 to 2012-10-31, 2012-11-04, 2012-11-11, 2012-11-18, 2012-11-25, 2012-12-02, 2012-12-09, 2012-12-16, 2012-12-23, 2012-12-25 to 2012-12-26, 2012-12-30, 2013-01-01, 2013-01-06, 2013-01-13, 2013-01-20, 2013-01-27, 2013-02-03, 2013-02-10 to 2013-02-17, 2013-02-24, 2013-03-03, 2013-03-10, 2013-03-17, 2013-03-24, 2013-03-29 to 2013-06-29, 2013-07-01 to 2013-10-31, 2013-11-03, 2013-11-10, 2013-11-17, 2013-11-24, 2013-12-01, 2013-12-08, 2013-12-15, 2013-12-22, 2013-12-25 to 2013-12-26, 2013-12-29, 2014-01-01, 2014-01-05, 2014-01-12, 2014-01-19, 2014-01-26, 2014-01-31 to 2014-02-09, 2014-02-16, 2014-02-23, 2014-03-02, 2014-03-09, 2014-03-16, 2014-03-23, 2014-03-30, 2014-04-01 to 2014-10-31, 2014-11-02, 2014-11-09, 2014-11-16, 2014-11-23, 2014-11-30, 2014-12-07, 2014-12-14, 2014-12-21, 2014-12-25 to 2014-12-26, 2014-12-28, 2015-01-01, 2015-01-04, 2015-01-11, 2015-01-18, 2015-01-25, 2015-02-01, 2015-02-08, 2015-02-15 to 2015-02-22, 2015-03-01, 2015-03-08, 2015-03-15, 2015-03-22, 2015-03-29, 2015-04-03 to 2015-04-07, 2015-04-10, 2015-04-12, 2015-04-19 to 2015-04-20, 2015-04-26, 2015-05-01, 2015-05-03, 2015-05-09 to 2015-05-10, 2015-05-17, 2015-05-20, 2015-05-24 to 2015-05-25, 2015-05-31, 2015-06-07, 2015-06-10, 2015-06-14, 2015-06-19 to 2015-06-21, 2015-06-28, 2015-07-01, 2015-07-05, 2015-07-10, 2015-07-12, 2015-07-19 to 2015-07-20, 2015-07-26, 2015-08-02, 2015-08-09 to 2015-08-10, 2015-08-16, 2015-08-20, 2015-08-23, 2015-08-30, 2015-09-06, 2015-09-10, 2015-09-13, 2015-09-19 to 2015-09-20, 2015-09-27 to 2015-09-28, 2015-10-01, 2015-10-04, 2015-10-11, 2015-10-18, 2015-10-21, 2015-10-25, 2015-11-01, 2015-11-08, 2015-11-15, 2015-11-22, 2015-11-29, 2015-12-06, 2015-12-13, 2015-12-20, 2015-12-25 to 2015-12-27, 2016-01-01, 2016-01-03, 2016-01-10, 2016-01-17, 2016-01-24, 2016-01-31, 2016-02-08 to 2016-02-10, 2016-03-25 to 2016-03-26, 2016-03-28, 2016-04-04, 2016-05-02.
- Cal 5: Mon-Sun 08:00-12:00, 13:00-17:00.
- Cal 7: Mon-Sun 08:00-12:00, 13:00-17:00.
- Cal 4: Mon-Sun 08:00-12:00, 13:00-17:00.
- Cal 6a (Extend Dry Season to Apr): Mon-Sun 08:00-12:00, 13:00-17:00. Exceptions (off unless hours are given): 2010-05-03 to 2010-07-31, 2010-08-02 to 2010-10-31, 2010-11-07, 2010-11-14, 2010-11-21, 2010-11-28, 2010-12-05, 2010-12-12, 2010-12-19, 2010-12-22, 2010-12-25 to 2010-12-27, 2011-01-01 to 2011-01-02, 2011-01-09, 2011-01-16, 2011-01-23, 2011-01-30 to 2011-02-06, 2011-02-13, 2011-02-20, 2011-02-27, 2011-03-06, 2011-03-13, 2011-03-20, 2011-03-27, 2011-04-01 to 2011-04-02 08:00-12:00, 13:00-17:00, 2011-04-03, 2011-04-04 08:00-12:00, 13:00-17:00, 2011-04-05, 2011-04-06 to 2011-04-09 08:00-12:00, 13:00-17:00, 2011-04-10, 2011-04-11 to 2011-04-16 08:00-12:00, 13:00-17:00, 2011-04-17, 2011-04-18 to 2011-04-21 08:00-12:00, 13:00-17:00, 2011-04-22 to 2011-04-25, 2011-04-26 to 2011-04-30 08:00-12:00, 13:00-17:00, 2011-05-01 to 2011-10-31, 2011-11-06, 2011-11-13, 2011-11-20, 2011-11-27, 2011-12-04, 2011-12-11, 2011-12-18, 2011-12-25 to 2011-12-27, 2012-01-01 to 2012-01-02, 2012-01-08, 2012-01-15, 2012-01-22 to 2012-01-29, 2012-02-05, 2012-02-12, 2012-02-19, 2012-02-26, 2012-03-04, 2012-03-11, 2012-03-18, 2012-03-25, 2012-04-01 to 2012-10-31, 2012-11-04, 2012-11-11, 2012-11-18, 2012-11-25, 2012-12-02, 2012-12-09, 2012-12-16, 2012-12-23, 2012-12-25 to 2012-12-26, 2012-12-30, 2013-01-01, 2013-01-06, 2013-01-13, 2013-01-20, 2013-01-27, 2013-02-03, 2013-02-10 to 2013-02-17, 2013-02-24, 2013-03-03, 2013-03-10, 2013-03-17, 2013-03-24, 2013-03-29 to 2013-06-29, 2013-07-01 to 2013-10-31, 2013-11-03, 2013-11-10, 2013-11-17, 2013-11-24, 2013-12-01, 2013-12-08, 2013-12-15, 2013-12-22, 2013-12-25 to 2013-12-26, 2013-12-29, 2014-01-01, 2014-01-05, 2014-01-12, 2014-01-19, 2014-01-26, 2014-01-31 to 2014-02-09, 2014-02-16, 2014-02-23, 2014-03-02, 2014-03-09, 2014-03-16, 2014-03-23, 2014-03-30, 2014-04-01 to 2014-10-31, 2014-11-02, 2014-11-09, 2014-11-16, 2014-11-23, 2014-11-30, 2014-12-07, 2014-12-14, 2014-12-21, 2014-12-25 to 2014-12-26, 2014-12-28, 2015-01-01, 2015-01-04, 2015-01-11, 2015-01-18, 2015-01-25, 2015-02-01, 2015-02-08, 2015-02-15 to 2015-02-22, 2015-03-01, 2015-03-08, 2015-03-15, 2015-03-22, 2015-03-29, 2015-04-03 to 2015-04-07, 2015-04-10, 2015-04-12, 2015-04-19 to 2015-04-20, 2015-04-26, 2015-05-01, 2015-05-03, 2015-05-09 to 2015-05-10, 2015-05-17, 2015-05-20, 2015-05-24 to 2015-05-25, 2015-05-31, 2015-06-07, 2015-06-10, 2015-06-14, 2015-06-19 to 2015-06-21, 2015-06-28, 2015-07-01, 2015-07-05, 2015-07-10, 2015-07-12, 2015-07-19 to 2015-07-20, 2015-07-26, 2015-08-02, 2015-08-09 to 2015-08-10, 2015-08-16, 2015-08-20, 2015-08-23, 2015-08-30, 2015-09-06, 2015-09-10, 2015-09-13, 2015-09-19 to 2015-09-20, 2015-09-27 to 2015-09-28, 2015-10-01, 2015-10-04, 2015-10-11, 2015-10-18, 2015-10-21, 2015-10-25, 2015-11-01, 2015-11-08, 2015-11-15, 2015-11-22, 2015-11-29, 2015-12-06, 2015-12-13, 2015-12-20, 2015-12-25 to 2015-12-27, 2016-01-01, 2016-01-03, 2016-01-10, 2016-01-17, 2016-01-24, 2016-01-31, 2016-02-08 to 2016-02-10, 2016-03-25 to 2016-03-26, 2016-03-28, 2016-04-04, 2016-05-02.
- Cal9(N)b: Mon-Sat 08:00-12:00, 13:00-17:00; Sun off. Exceptions (off unless hours are given): 2010-05-10, 2010-05-20 to 2010-05-21, 2010-06-10, 2010-06-16, 2010-06-18, 2010-07-01, 2010-07-09, 2010-07-20, 2010-08-10, 2010-08-20, 2010-09-10, 2010-09-20, 2010-09-23, 2010-10-01, 2010-10-15, 2010-12-22, 2010-12-24, 2010-12-27, 2010-12-31, 2011-01-31 to 2011-02-04, 2011-04-05, 2011-04-08, 2011-04-20, 2011-05-02, 2011-05-09 to 2011-05-10, 2011-05-20, 2011-06-06, 2011-06-10, 2011-06-20, 2011-07-01, 2011-07-08, 2011-07-20, 2011-08-10, 2011-08-19, 2011-09-09, 2011-09-13, 2011-09-20, 2011-09-30, 2011-10-05, 2011-12-26 to 2011-12-27, 2012-01-02, 2012-01-23 to 2012-01-25, 2012-01-26 to 2012-01-27 08:00-12:00, 13:00-17:00, 2012-04-06, 2012-04-09 to 2012-04-10, 2012-04-20, 2012-04-27, 2012-05-01, 2012-05-10, 2012-05-18, 2012-06-08, 2012-06-20, 2012-06-22, 2012-07-02, 2012-07-10, 2012-07-20, 2012-08-10, 2012-08-20, 2012-09-10, 2012-09-20, 2012-10-01 to 2012-10-02, 2012-10-23, 2012-12-10 to 2012-12-15, 2012-12-17 to 2012-12-22, 2012-12-24 to 2012-12-29, 2012-12-31 to 2013-01-05, 2013-02-11 to 2013-02-15, 2013-03-29, 2013-04-01, 2013-04-03, 2013-04-10, 2013-04-19, 2013-05-01, 2013-05-10, 2013-05-17, 2013-05-20, 2013-06-10, 2013-06-12, 2013-06-20, 2013-07-01, 2013-07-10, 2013-07-19, 2013-08-09, 2013-08-20, 2013-09-10, 2013-09-19 to 2013-09-20, 2013-10-01, 2013-10-14, 2013-12-25 to 2013-12-26, 2014-01-01, 2014-01-31, 2014-02-03 to 2014-02-07, 2014-04-04, 2014-04-10, 2014-04-17 to 2014-04-18, 2014-04-21, 2014-05-01, 2014-05-06, 2014-05-09, 2014-05-20, 2014-06-02, 2014-06-10, 2014-06-20, 2014-07-01, 2014-07-10, 2014-07-18, 2014-08-08, 2014-08-20, 2014-09-09 to 2014-09-10, 2014-09-19, 2014-10-01 to 2014-10-02, 2014-12-25 to 2014-12-26, 2015-01-01, 2015-02-16 to 2015-02-20, 2015-04-03, 2015-04-06 to 2015-04-07, 2015-04-10, 2015-04-20, 2015-05-01, 2015-05-08, 2015-05-20, 2015-05-25, 2015-06-10, 2015-06-19, 2015-07-01, 2015-07-10, 2015-07-20, 2015-08-10, 2015-08-20, 2015-09-10, 2015-09-18, 2015-09-28, 2015-10-01, 2015-10-21, 2015-12-25, 2016-01-01, 2016-02-08 to 2016-02-10, 2016-03-25, 2016-03-28, 2016-04-04, 2016-05-02.
- Cal9(N)CP81(+235m): Mon-Sat 08:00-12:00, 13:00-17:00; Sun off. Exceptions (off unless hours are given): 2010-05-21, 2010-06-16, 2010-07-01, 2010-09-23, 2010-10-01, 2010-10-15, 2010-12-24, 2010-12-27, 2010-12-31, 2011-01-03 to 2011-01-07, 2011-04-05, 2011-04-22, 2011-04-25, 2011-05-02, 2011-05-10, 2011-06-06, 2011-07-01, 2011-09-13, 2011-09-30, 2011-10-05, 2011-12-26 to 2011-12-27, 2012-01-02, 2012-01-23 to 2012-01-27, 2012-04-04, 2012-04-06, 2012-04-09, 2012-04-27, 2012-05-01, 2012-06-22, 2012-07-02, 2012-09-10, 2012-09-13 to 2012-09-15 08:00-12:00, 13:00-17:00, 2012-09-17 to 2012-09-19 08:00-12:00, 13:00-17:00, 2012-09-20, 2012-09-21 to 2012-09-22 08:00-12:00, 13:00-17:00, 2012-09-24 to 2012-09-29 08:00-12:00, 13:00-17:00, 2012-10-01 to 2012-10-02, 2012-10-03 to 2012-10-06 08:00-12:00, 13:00-17:00, 2012-10-08 to 2012-10-10 08:00-12:00, 13:00-17:00, 2012-10-23, 2012-10-31 to 2012-11-03, 2012-11-05 to 2012-11-10, 2012-11-12 to 2012-11-17, 2012-11-19 to 2012-11-24, 2012-11-26 to 2012-12-01, 2012-12-03 to 2012-12-08, 2012-12-10 to 2012-12-14, 2012-12-25 to 2012-12-26, 2013-01-01, 2013-02-11 to 2013-02-15, 2013-03-29, 2013-04-01, 2013-04-04, 2013-05-01, 2013-05-17, 2013-06-12, 2013-07-01, 2013-07-20, 2013-07-25 to 2013-07-27 08:00-12:00, 13:00-17:00, 2013-07-29 to 2013-08-03 08:00-12:00, 13:00-17:00, 2013-08-05 to 2013-08-09 08:00-12:00, 13:00-17:00, 2013-08-10, 2013-08-12 to 2013-08-17 08:00-12:00, 13:00-17:00, 2013-08-19 08:00-12:00, 13:00-17:00, 2013-08-20, 2013-08-21 to 2013-08-24 08:00-12:00, 13:00-17:00, 2013-08-26 to 2013-08-31 08:00-12:00, 13:00-17:00, 2013-09-02 to 2013-09-07 08:00-12:00, 13:00-17:00, 2013-09-10, 2013-09-19 to 2013-09-20, 2013-10-01, 2013-10-14, 2013-12-21, 2013-12-25 to 2013-12-26, 2014-01-01, 2014-01-31 to 2014-02-01, 2014-02-03, 2014-02-04 to 2014-02-07 08:00-12:00, 13:00-17:00, 2014-04-04, 2014-04-18, 2014-04-21, 2014-05-01, 2014-05-06, 2014-06-02, 2014-07-01, 2014-09-09, 2014-10-01 to 2014-10-02, 2014-12-25 to 2014-12-26, 2015-01-01, 2015-02-16 to 2015-02-20, 2015-04-03, 2015-04-06 to 2015-04-07, 2015-05-01, 2015-05-25, 2015-06-19, 2015-07-01, 2015-09-28, 2015-10-01, 2015-10-21, 2015-12-25, 2016-01-01, 2016-02-08 to 2016-02-10, 2016-03-25, 2016-03-28, 2016-04-04, 2016-05-02.
- Cal 5(3): Mon-Sun 08:00-12:00, 13:00-17:00.
- Cal 4(3): Mon-Sun 08:00-12:00, 13:00-17:00.

## Resources

| Resource | Group | Unit |
| --- | --- | --- |
| Other Skill Labour (BS / E&M) | labor |  |
| Mobile Crane | equipment |  |
| Backhoe | equipment |  |
| Plant Operator | labor |  |
| Other Skill Labour (Civil) | labor |  |
| Drilling Rig | equipment |  |
| D-wall Excavation | material | m3 |
| D-wall Panel | material | Panels |
| Concrete | material | m3 |
| Rebar | material | Tonne |
| Diaphragm Wall Rig | equipment |  |
| Steel Fixer | labor |  |
| Concretor | labor |  |
| Excavation - Soft | material | m3 |
| nos. of Pile Installation | material | Nos |
| Socketed H-pile Rig | equipment |  |
| Carpenter | labor |  |
| Roller | material |  |
| Bored Pile Rig | equipment |  |
| Drilling Jumbo | equipment |  |
| Pile Removal | material | Nos |
| Pile Removal rig | material |  |
| Sheet piling rig | material |  |
| Excavation - Hard | material | m3 |
| TBM Excavation | material | m3 |
| TBM Maintenance Crew | labor |  |
| TBM Operational Crew | labor |  |
| TBM | equipment |  |
| Precast Segment | material |  |

## Schedule

| ID | WBS | Activity | Type | Duration | Start | Finish | Predecessors | Complete | Planned start | Planned finish | Total float | Constraint | LEVEL 1 | LEVEL 2 | LEVEL 3 | Contracts | 820_As-built | SUMMARY | 820_As-built-verified | Classify |
| --- | --- | --- | --- | --- | --- | --- | --- | --- | --- | --- | --- | --- | --- | --- | --- | --- | --- | --- | --- | --- |
|  | 820A | **General** |  |  | 2010-05-03 | 2016-01-26 |  |  |  |  |  |  |  |  |  |  |  |  |  |  |
|  | 10 | **Schedule of Key Dates** |  |  | 2010-05-03 | 2016-01-26 |  |  |  |  |  |  |  |  |  |  |  |  |  |  |
|  | 10 | **General** |  |  | 2010-05-03 | 2016-01-26 |  |  |  |  |  |  |  |  |  |  |  |  |  |  |
| 8200KD1010 |  | Letter of Acceptance | milestone | 0d | 2010-05-03 A | 2010-05-03 A |  | 100% | 2011-01-08 | 2011-01-08 |  | mandatory start 2010-05-03 | GEN | KEY | o | 820 | 820_AB |  |  |  |
| 8200KD1020 |  | Date of Commencement | milestone | 0d | 2010-05-12 A | 2010-05-12 A |  | 100% | 2011-01-08 | 2011-01-08 |  | mandatory start 2010-05-12 | GEN | KEY | o | 820 | 820_AB | 1 |  |  |
| 8200KD1030 |  | Completion whole of the Works (Excluding Options I3 & I4) | milestone | 0d | 2015-05-10 A | 2015-05-10 A | 8200KD1020 FS+1825d, 8200CCF788, 8200TBC615a, 8200CPC582, 8200CCG520, 8200CCG798, 8200CCE1412, 8200CC1530, 8200CCF786, 8200CCF866, 8200CCF600, 8200CCG939b, 8200CCE700, 8200WKT530, 8200WKT520, 8200TBC858, 8200TBC1248, 8200CCG814a, 8200CCF390, 8200CCF604, 8200CCF752, 8200CCG760, 8200CCF305, 8200CCF520, 8200CPC936, 8200CCG830, 8200CC1522, 8200CCF860, 8200CCG1010, 8200CCG505, 8200CCG799b, 8200CCG938, 8200CCF909c, 8200TBC415a, 8200CPC168, 8200CCG510, 8200CCE705, 8200C0A490, 8200CCF315, 8200TBC1418, 8200TBC425a, 8200CCG500, 8200CCG210 | 100% |  |  |  | mandatory finish 2015-05-10 | GEN | KEY | o | 820 | 820_AB | 1 | 820_ABV |  |
| 8200KD1030a |  | Completion whole of the Works (Including Options I3 & I4) | milestone | 0d | 2016-01-26 | 2016-01-26 | 8200C0A490, 8200KD1020 FS+1991d, 8200CC1530, 8200CC1440, 8200CCF600, 8200CC1522, 8200CC1340, 8200CCD595, 8200CCE1452, 8200CCF305, 8200CPC168, 8200CCG999b |  |  |  | 0d | mandatory finish 2016-01-26 | GEN | KEY | o | 820 | 820_AB | 1 |  |  |
|  | 820C | **Table 4 - Specified Degress of completion of the Works** |  |  | 2013-08-19 | 2015-05-03 |  |  |  |  |  |  |  |  |  |  |  |  |  |  |
|  | 4 | **Target Dates for Supplementary Agreement No.3** |  |  | 2014-05-18 | 2015-04-19 |  |  |  |  |  |  |  |  |  |  |  |  |  |  |
|  | 1 | **Deg.1 Completion (Target Dates)** |  |  | 2014-05-18 | 2015-04-19 |  |  |  |  |  |  |  |  |  |  |  |  |  |  |
| 8200KD7010T |  | Ref.4A(ii): D/TTunnel from CH137+860 to Southern Contract Limit & 811A D/T C&C Section(Deg.1:20-Jul-14&Target:18-May-14) | milestone | 0d | 2014-05-18 A | 2014-05-18 A | 8200TBC580, 8200CCD510, 8200WKT230 | 100% |  |  |  | finish on 2014-05-18 | DEG | COMP SPE00 | DEG 1 C | 820 |  | 1 |  |  |
| 8200KD7020T |  | Ref.4B(i): Up Track tunnel from the Northern Contract Limit to CH137+860 (Deg.1: 29-Jun-14 & Target: 1-Jun-14) | milestone | 0d | 2014-06-29 A | 2014-06-29 A | 8200TBC720, 8200CCD810 | 100% |  |  |  | finish on 2014-06-01 | DEG | COMP SPE00 | DEG 1 C | 820 |  | 1 |  | C1 |
| 8200KD7030T |  | Ref.4B(ii): U/T South Tunnel from CH137+860 to 950m from the Southern Contract Limit (Deg.1: 8Mar15 & Target: 21Dec14) | milestone | 0d | 2014-12-16 A | 2014-12-16 A | 8200CCD550, 8200TBC986 | 100% |  |  |  | finish on 2014-12-21 | DEG | COMP SPE00 | DEG 1 C |  |  |  |  |  |
| 8200KD7040T |  | Ref.4B(iii): U/T Tunnel from CH137+860 to Southern Contract Limit & 811A U/T C&C Section(Deg.1: 12Apr15&Target: 25Jan15) | milestone | 0d | 2015-03-13 A | 2015-03-13 A | 8200CCD750, 8200CCD600, 8200WKT440, 8200TBC988 | 100% |  |  |  | finish on 2015-01-25 | DEG | COMP SPE00 | DEG 1 C |  |  |  |  |  |
| 8200KD7050T |  | Ref.4D: Closure of Temp. Access Opening & Central Opening Structure within NAC Shaft (Deg.1: 3May15 & Target: 19Apr15) | milestone | 0d | 2015-04-19 A | 2015-04-19 A | 8200CCD800 | 100% |  |  |  | finish on 2015-04-19 | DEG | COMP SPE00 | DEG 1 C |  |  |  |  |  |
|  | 10 | **Completion of Specified Degrees of Completion of the Works** |  |  | 2013-08-19 | 2015-05-03 |  |  |  |  |  |  |  |  |  |  |  |  |  |  |
|  | 10 | **Deg.1 Completion** |  |  | 2013-08-19 | 2015-05-03 |  |  |  |  |  |  |  |  |  |  |  |  |  |  |
| 8200KD3010 |  | Ref.4A(i): Down Track tunnel from the Northern Contract Limit to CH137+860 incl. provision of Temp. access opening | milestone | 0d | 2013-08-19 A | 2013-08-19 A | 8200CPC255c, 8200KD1020 FS+1202d, 8200TBC834, 8200CPC315c, 8210CPC380c, 8200CPC185c, 8200CCD500, 8210CPC320a, 8210CPC160c, 8210CPC290e, 8200CPC120c | 100% | 2013-08-18 | 2013-08-18 |  | finish on or after 2013-08-25 | DEG | COMP SPE00 | DEG 1 C | 820 | 820_AB | 1 | 820_ABV |  |
| 8200KD3020 |  | Ref.4C(i): All Rooms and Common Areas at Level L2, UL2, L1 and UL1 (Excl. staircases, Lift shaft & CLP risers) | milestone | 0d | 2013-12-22 A | 2013-12-22 A | 8200CCE550b, 8200CCE550c | 100% |  |  |  | finish on 2013-12-22 | DEG | COMP SPE00 | DEG 1 C |  | 820_AB |  | 820_ABV |  |
| 8200KD3030 |  | Ref.4C(ii): All Rooms and Common Areas at Track level and Above Track level(Excl. staircases, Lift shaft & CLP risers) | milestone | 0d | 2014-03-02 A | 2014-03-02 A | 8200CCE550, 8200KD1020 FS+1391d, 8200CCE551 | 100% |  |  |  | finish on 2014-03-02 | DEG | COMP SPE00 | DEG 1 C |  | 820_AB |  | 820_ABV |  |
| 8200KD3060 |  | Ref.4A(ii): D/TTunnel from CH137+860 to Southern Contract Limit & 811A D/T C&C Section(Deg.1:20-Jul-14&Target:18-May-14) | milestone | 0d | 2014-05-18 A | 2014-05-18 A | 8200TBC580, 8200CCD510, 8200KD1020 FS+1377d, 8200WKT230 | 100% |  |  |  | finish on 2014-07-20 | DEG | COMP SPE00 | DEG 1 C | 820 | 820_AB | 1 | 820_ABV |  |
| 8200KD3040 |  | Ref.4C(iii): All Rooms and Common Areas within VB7 [Excl. the parts of the VB7 under Ref. 4C(i) & 4C(ii)] | milestone | 0d | 2014-05-31 A | 2014-05-31 A | 8200KD1020 FS+1349d, 8200CCE553 | 100% |  |  |  | mandatory finish 2014-05-11 | DEG | COMP SPE00 | DEG 1 C | 820 | 820_AB | 1 | 820_ABV | C1 |
| 8200KD3050 |  | Ref.4B(i): Up Track tunnel from the Northern Contract Limit to CH137+860 (Deg.1: 29-Jun-14 & Target: 1-Jun-14) | milestone | 0d | 2014-06-29 A | 2014-06-29 A | 8200CPC270a, 8200CCD650, 8210CPC420a, 8200CPC205a, 8210CPC220c, 8200CCD810, 8200CPC140c, 8200CPC330a, 8200KD1020 FS+1454d, 8210CPC470a, 8200TBC720, 8210CPC488a | 100% |  |  |  | finish on 2014-06-29 | DEG | COMP SPE00 | DEG 1 C | 820 | 820_AB | 1 | 820_ABV | C1 |
| 8200KD3070 |  | Ref.4B(ii): U/T South Tunnel from CH137+860 to 950m from the Southern Contract Limit (Deg.1: 8Mar15 & Target: 21Dec14) | milestone | 0d | 2015-02-08 A | 2015-02-08 A | 8200CPC800b, 8200CPC395a, 8200CPC470a, 8200CCD550, 8200KD1020 FS+1524d, 8200TBC986, 8200CPC720a, 8200CPC865, 8200CPC555a, 8200CPC630a | 100% | 2014-12-16 | 2014-12-16 |  | finish on 2015-03-08 | DEG | COMP SPE00 | DEG 1 C |  | 820_AB |  | 820_ABV |  |
| 8200KD3080 |  | Ref.4B(iii): U/T Tunnel from CH137+860 to Southern Contract Limit & 811A U/T C&C Section(Deg.1: 12Apr15&Target: 25Jan15) | milestone | 0d | 2015-03-13 A | 2015-03-13 A | 8200WKT440, 8200KD1020 FS+1559d, 8200CPC926a, 8200CPC890a, 8200CCD600, 8200CPC980c, 8200CCD700, 8200TBC988 | 100% |  |  |  | finish on 2015-04-12 | DEG | COMP SPE00 | DEG 1 C |  | 820_AB |  | 820_ABV |  |
| 8200KD3090 |  | Ref.4D: Closure of Temp. Access Opening & Central Opening Structure within NAC Shaft (Deg.1: 3May15 & Target: 19Apr15) | milestone | 0d | 2015-05-03 A | 2015-05-03 A | 8200CCD800, 8200KD1020 FS+1664d | 100% | 2015-04-19 | 2015-04-19 |  | finish on 2015-05-03 | DEG | COMP SPE00 | DEG 1 C |  | 820_AB |  | 820_ABV |  |

Notes:
- 8200KD7030T: Status Report: The EOT date is 28-Jul-14 (SA2: / 13-Jul-14).
- 8200KD7040T: Problems Encountered: ->Delay due to 811A C&C U/T / construction
- 8200KD3070: Status Report: The EOT date is 28-Jul-14 (SA2: / 13-Jul-14).
- 8200KD3080: Problems Encountered: ->Delay due to 811A C&C U/T / construction

| ID | WBS | Activity | Type | Duration | Start | Finish | Predecessors | Complete | Planned start | Planned finish | Constraint | Classify | LEVEL 1 | LEVEL 2 | LEVEL 3 | SUMMARY | Contracts | 820_As-built | Hidden |
| --- | --- | --- | --- | --- | --- | --- | --- | --- | --- | --- | --- | --- | --- | --- | --- | --- | --- | --- | --- |
|  | 20 | **Deg.2 Completion** |  |  | 2014-02-23 | 2014-07-23 |  |  |  |  |  |  |  |  |  |  |  |  |  |
| 8200KD4010 |  | Ref.4C(i) Deg.2: All Rooms and Common Areas at Level L2, UL2, L1 and UL1 (Excl. staircases, Lift shaft & CLP risers) | milestone | 0d | 2014-02-23 A | 2014-02-23 A | 8200CCE565 | 100% |  |  | mandatory finish 2014-02-23 | C1 | DEG | COMP SPE00 | DEG 2 C | 1 | 820 | 820_AB |  |
| 8200KD4020 |  | Ref.4C(ii) Deg.2: All Rooms and Common Areas at Track level and AT level(Excl. staircases, Lift shaft & CLP risers) | milestone | 0d | 2014-03-23 A | 2014-03-23 A | 8200CCE566 | 100% |  |  | mandatory finish 2014-03-23 |  | DEG | COMP SPE00 | DEG 2 C |  |  | 820_AB |  |
| 8200KD4030 |  | Ref.4C(iii) Deg.2: All Rooms and Common Areas within VB7 [Excl. the parts of the VB7 under Ref. 4C(i) & 4C(ii)] | milestone | 0d | 2014-07-23 A | 2014-07-23 A | 8200CCE567 | 100% |  |  | finish on 2014-08-03 |  | DEG | COMP SPE00 | DEG 2 C |  |  | 820_AB |  |
|  | 30 | **Deg.3 Completion** |  |  | 2014-04-20 | 2014-09-18 |  |  |  |  |  |  |  |  |  |  |  |  |  |
| 8200KD5010 |  | Ref.4C(i) Deg.3: All Rooms and Common Areas at Level L1, UL2, L1 and UL1 (Excl. staircases, Lift shaft & CLP risers) | milestone | 0d | 2014-04-20 A | 2014-04-20 A | 8200CCE575 | 100% |  |  | mandatory finish 2014-04-20 | C1 | DEG | COMP SPE00 | DEG 3 C | 1 | 820 | 820_AB |  |
| 8200KD5020 |  | Ref.4C(ii) Deg.3: All Rooms and Common Areas at Track level and AT level(Excl. staircases, Lift shaft & CLP risers) | milestone | 0d | 2014-05-18 A | 2014-05-18 A | 8200CCE576 | 100% |  |  | mandatory finish 2014-05-18 |  | DEG | COMP SPE00 | DEG 3 C |  |  | 820_AB |  |
| 8200KD5030 |  | Ref.4C(iii) Deg.3: All Rooms and Common Areas within VB7 [Excl. the parts of the VB7 under Ref. 4C(i) & 4C(ii)] | milestone | 0d | 2014-09-18 A | 2014-09-18 A | 8200CCE577 | 100% |  |  | finish on 2014-09-28 |  | DEG | COMP SPE00 | DEG 3 C |  |  | 820_AB |  |
|  | 820D | **Schedule of Access Dates and Vacation Dates** |  |  | 2010-05-15 | 2016-05-10 |  |  |  |  |  |  |  |  |  |  |  |  |  |
|  | 10 | **Access Date** |  |  | 2010-05-15 | 2013-01-21 |  |  |  |  |  |  |  |  |  |  |  |  |  |
|  | 10 | **General** |  |  | 2010-05-15 | 2013-01-21 |  |  |  |  |  |  |  |  |  |  |  |  |  |
| 8200AC1020 |  | Works Area 10.2 | milestone | 0d | 2010-05-15 A | 2010-05-15 A | 8200KD1020 FS+14d | 100% | 2011-01-08 | 2011-01-08 |  |  | ACCE | ACC DAT | o | A | 820 | 820_AB |  |
| 8200AC1030 |  | Works Area 10.3 | milestone | 0d | 2010-05-15 A | 2010-05-15 A | 8200KD1020 FS+14d | 100% | 2011-01-08 | 2011-01-08 |  |  | ACCE | ACC DAT | o | A | 820 | 820_AB |  |
| 8200AC1050 |  | Works Area 10.4 | milestone | 0d | 2010-05-15 A | 2010-05-15 A | 8200KD1020 FS+14d | 100% | 2011-01-08 | 2011-01-08 |  |  | ACCE | ACC DAT | o | A | 820 | 820_AB |  |
| 8200AC1160 |  | Works Area 11.22 | milestone | 0d | 2010-05-15 A | 2010-05-15 A | 8200KD1020 FS+14d | 100% | 2011-01-08 | 2011-01-08 |  |  | ACCE | ACC DAT | o | A | 820 | 820_AB |  |
| 8200AC1170 |  | Works Area 11.23 | milestone | 0d | 2010-05-15 A | 2010-05-15 A | 8200KD1020 FS+14d | 100% | 2011-01-08 | 2011-01-08 |  |  | ACCE | ACC DAT | o | A | 820 | 820_AB |  |
| 8200AC1200 |  | Works Area 11.23B | milestone | 0d | 2010-05-15 A | 2010-05-15 A | 8200KD1020 FS+14d | 100% | 2011-01-08 | 2011-01-08 |  |  | ACCE | ACC DAT | o | A | 820 | 820_AB |  |
| 8200AC1210 |  | Works Area 11.24 (1st Possession) | milestone | 0d | 2010-05-15 A | 2010-05-15 A | 8200KD1020 FS+14d | 100% | 2011-01-08 | 2011-01-08 |  |  | ACCE | ACC DAT | o | A | 820 | 820_AB |  |
| 8200AC1230 |  | Works Area 11.25 (1st Posssession) | milestone | 0d | 2010-05-15 A | 2010-05-15 A | 8200KD1020 FS+14d | 100% | 2011-01-08 | 2011-01-08 |  |  | ACCE | ACC DAT | o | A | 820 | 820_AB |  |
| 8200AC1250 |  | Works Area 11.26A | milestone | 0d | 2010-05-15 A | 2010-05-15 A | 8200KD1020 FS+14d | 100% | 2011-01-08 | 2011-01-08 |  |  | ACCE | ACC DAT | o | A | 820 | 820_AB |  |
| 8200AC1260 |  | Works Area 11.26B | milestone | 0d | 2010-05-15 A | 2010-05-15 A | 8200KD1020 FS+14d | 100% | 2011-01-08 | 2011-01-08 |  |  | ACCE | ACC DAT | o | A | 820 | 820_AB |  |
| 8200AC1270 |  | Works Area 11.26C | milestone | 0d | 2010-05-15 A | 2010-05-15 A | 8200KD1020 FS+14d | 100% | 2011-01-08 | 2011-01-08 |  |  | ACCE | ACC DAT | o | A | 820 | 820_AB |  |
| 8200AC1300 |  | Works Area 11.29A | milestone | 0d | 2010-05-15 A | 2010-05-15 A | 8200KD1020 FS+14d | 100% | 2011-01-08 | 2011-01-08 | start on 2010-05-26 |  | ACCE | ACC DAT | o | A | 820 | 820_AB |  |
| 8200AC1310 |  | Works Area 11.29B | milestone | 0d | 2010-05-15 A | 2010-05-15 A | 8200KD1020 FS+14d | 100% | 2011-01-08 | 2011-01-08 | start on 2010-05-26 |  | ACCE | ACC DAT | o | A | 820 | 820_AB |  |
| 8200AC1320 |  | Works Area 11.29C | milestone | 0d | 2010-05-15 A | 2010-05-15 A | 8200KD1020 FS+14d | 100% |  |  | start on 2010-05-26 |  | ACCE | ACC DAT | o | A | 820 | 820_AB |  |
| 8200AC1330 |  | Works Area 11.29D | milestone | 0d | 2010-05-15 A | 2010-05-15 A | 8200KD1020 FS+14d | 100% |  |  | start on 2010-05-26 |  | ACCE | ACC DAT | o | A | 820 | 820_AB |  |
| 8200AC1340 |  | Works Area 11.29E | milestone | 0d | 2010-05-15 A | 2010-05-15 A | 8200KD1020 FS+14d | 100% |  |  | start on 2010-05-26 |  | ACCE | ACC DAT | o | A | 820 | 820_AB |  |
| 8200AC1350 |  | Works Area 11.29F | milestone | 0d | 2010-05-15 A | 2010-05-15 A | 8200KD1020 FS+14d | 100% |  |  | start on 2010-05-26 |  | ACCE | ACC DAT | o | A | 820 | 820_AB |  |
| 8200AC1355 |  | Works Area 11.29G | milestone | 0d | 2010-05-15 A | 2010-05-15 A | 8200KD1020 FS+14d | 100% |  |  |  |  | ACCE | ACC DAT | o |  |  | 820_AB |  |
| 8200AC1360 |  | Works Area 11.30 | milestone | 0d | 2010-05-15 A | 2010-05-15 A | 8200KD1020 FS+14d | 100% |  |  |  |  | ACCE | ACC DAT | o | A | 820 | 820_AB |  |
| 8200AC1370 |  | Works Area 11.31 | milestone | 0d | 2010-05-15 A | 2010-05-15 A | 8200KD1020 FS+14d | 100% |  |  |  |  | ACCE | ACC DAT | o | A | 820 | 820_AB |  |
| 8200AC1380 |  | Works Area 11.32 | milestone | 0d | 2010-05-15 A | 2010-05-15 A | 8200KD1020 FS+14d | 100% |  |  |  |  | ACCE | ACC DAT | o | A | 820 | 820_AB |  |
| 8200AC1390 |  | Works Area 11.33A | milestone | 0d | 2010-05-15 A | 2010-05-15 A | 8200KD1020 FS+14d | 100% |  |  |  |  | ACCE | ACC DAT | o | A | 820 | 820_AB |  |
| 8200AC1400 |  | Works Area 11.33B | milestone | 0d | 2010-05-15 A | 2010-05-15 A | 8200KD1020 FS+14d | 100% |  |  |  |  | ACCE | ACC DAT | o | A | 820 | 820_AB |  |
| 8200AC1190 |  | Works Area 11.23A | milestone | 0d | 2010-05-26 A | 2010-05-26 A | 8200KD1020 FS+14d | 100% | 2011-01-08 | 2011-01-08 |  |  | ACCE | ACC DAT | o | A | 820 | 820_AB |  |
| 8200AC1140 |  | Works Area 11.21 (Subject to SLG Approval) | milestone | 0d | 2010-07-02 A | 2010-07-02 A | 8200TME160 | 100% | 2011-01-08 | 2011-01-08 |  |  | ACCE | ACC DAT | o | A | 820 | 820_AB |  |
| 8200AC1280 |  | Works Area 11.27 (Subject to SLG Approval) | milestone | 0d | 2010-07-27 A | 2010-07-27 A | 8200TME160 | 100% | 2011-01-08 | 2011-01-08 |  |  | ACCE | ACC DAT | o | A | 820 | 820_AB |  |
| 8200AC1100 |  | Works Area 11.12 (Subject to SLG Approval) | milestone | 0d | 2010-08-05 A | 2010-08-05 A | 8200TME160 | 100% | 2011-01-08 | 2011-01-08 |  |  | ACCE | ACC DAT | o | A | 820 | 820_AB |  |
| 8200AC1130 |  | Works Area 11.15 (Subject to SLG Approval) | milestone | 0d | 2010-08-05 A | 2010-08-05 A | 8200TME160 | 100% | 2011-01-08 | 2011-01-08 |  |  | ACCE | ACC DAT | o | A | 820 | 820_AB |  |
| 8200AC1410 |  | Works Area 12.1 (Subject to SLG Approval) | milestone | 0d | 2010-08-05 A | 2010-08-05 A | 8200TME160 | 100% | 2011-01-08 | 2011-01-08 |  |  | ACCE | ACC DAT | o | A | 820 | 820_AB |  |
| 8200AC1010 |  | Works Area 10.1 (Subject to SLG Approval) | milestone | 0d | 2010-08-17 A | 2010-08-17 A | 8200KD1020, 8200TME160 | 100% | 2011-01-08 | 2011-01-08 |  |  | ACCE | ACC DAT | o | A | 820 | 820_AB |  |
| 8200AC1040 |  | Works Area 10.3U subject to MTR Railway Operation Approval | milestone | 0d | 2011-01-12 A | 2011-01-12 A | 8200KD1020 FS+14d | 100% | 2011-09-29 | 2011-09-29 |  |  | ACCE | ACC DAT | o | A | 820 | 820_AB |  |
| 8200AC1150 |  | Works Area 11.21A (Subject to SLG Approval) | milestone | 0d | 2011-04-01 A | 2011-04-01 A | 8200TME160 | 100% | 2011-08-31 | 2011-08-31 |  |  | ACCE | ACC DAT | o | A | 820 | 820_AB |  |
| 8200AC1080 |  | Works Area 11.10A | milestone | 0d | 2012-02-06 A | 2012-02-06 A |  | 100% |  |  | start on 2012-02-06 |  | ACCE | ACC DAT | o | A | 820 | 820_AB |  |
| 8200AC1090 |  | Works Area 11.10B | milestone | 0d | 2012-02-06 A | 2012-02-06 A |  | 100% |  |  | start on 2012-02-06 |  | ACCE | ACC DAT | o | A | 820 | 820_AB |  |
| 8200AC1060 |  | Works Area 11.1 | milestone | 0d | 2012-04-09 A | 2012-04-09 A |  | 100% |  |  | start on 2012-04-09 |  | ACCE | ACC DAT | o | A | 820 | 820_AB |  |
| 8200AC1070 |  | Works Area 11.2 | milestone | 0d | 2012-04-09 A | 2012-04-09 A |  | 100% |  |  | start on 2012-04-09 |  | ACCE | ACC DAT | o | A | 820 | 820_AB |  |
| 8200AC2550 |  | Works Area 12.2 | milestone | 0d | 2012-11-12 A | 2012-11-12 A |  | 100% | 2012-11-30 | 2012-11-30 | start on 2012-11-12 |  | ACCE | ACC DAT | o | A | 820 | 820_AB |  |
| 8200AC1120 |  | Works Area 11.14 | milestone | 0d | 2012-12-10 A | 2012-12-10 A |  | 100% |  |  | start on 2012-12-10 |  | ACCE | ACC DAT | o | A | 820 | 820_AB |  |
| 8200AC1110 |  | Works Area 11.13 (conform by Engineer) | milestone | 0d | 2012-12-31 A | 2012-12-31 A |  | 100% |  |  | start on 2012-12-31 |  | ACCE | ACC DAT | o | A | 820 | 820_AB |  |
| 8200AC1290 |  | Wks Area 11.28-180day from Contractor's Confirm | milestone | 0d | 2013-01-21 A | 2013-01-21 A | 8200KD1020 FS+180d | 100% |  |  |  |  | ACCE | ACC DAT | o | A | 820 | 820_AB | H |

Notes:
- 8200AC1110: Basis & Assumptions: - confirm by Engineer in Week 48/2012

| ID | WBS | Activity | Type | Duration | Start | Finish | Predecessors | Complete | Planned start | Planned finish | Total float | Free float | Constraint | LEVEL 1 | LEVEL 2 | LEVEL 3 | SUMMARY | Contracts | 820_As-built |
| --- | --- | --- | --- | --- | --- | --- | --- | --- | --- | --- | --- | --- | --- | --- | --- | --- | --- | --- | --- |
|  | 1 | **Proposed Return Date** |  |  | 2015-05-31 | 2015-12-24 |  |  |  |  |  |  |  |  |  |  |  |  |  |
|  | 1 | **Site 6** |  |  | 2015-12-24 | 2015-12-24 |  |  |  |  |  |  |  |  |  |  |  |  |  |
| 8200PRD0110 |  | Proposed Return date of Works Area 11.23 (820 Site Office & Site 6) | milestone | 0d | 2015-12-24 | 2015-12-24 | 8200TBC988, 8200CC1550, 8200CCD800, 8200CCE1452 |  |  |  | 159d | 138d | finish on or after 2015-03-29 | ACCE | RETURND | o | A | 820 | 820_AB |
| 8200PRD0120 |  | Proposed Return date of Works Area 11.23A (Site 6) | milestone | 0d | 2015-12-24 | 2015-12-24 | 8200TBC988, 8200CCD800, 8200CCE1452, 8200TBC988 FF, 8200CC1550 |  |  |  | 159d | 138d | finish on or after 2015-03-29 | ACCE | RETURND | o | A | 820 | 820_AB |
| 8200PRD0130 |  | Proposed Return date of Works Area 11.23B (Site 6) | milestone | 0d | 2015-12-24 | 2015-12-24 | 8200CCD800, 8200TBC988, 8200CC1550, 8200CCE1452 |  |  |  | 159d | 138d | finish on or after 2015-03-29 | ACCE | RETURND | o | A | 820 | 820_AB |
| 8200PRD0140 |  | Proposed Return date of Works Area 11.24 (Site 6) | milestone | 0d | 2015-12-24 | 2015-12-24 | 8200CCD800, 8200TBC988, 8200CC1550, 8200CCE1452 |  |  |  | 159d | 138d | finish on or after 2015-03-29 | ACCE | RETURND | o | A | 820 | 820_AB |
|  | 2 | **Barging Point** |  |  | 2015-05-31 | 2015-05-31 |  |  |  |  |  |  |  |  |  |  |  |  |  |
| 8200PRD0150 |  | Proposed Return date of Works Area 11.29A (Barging point) | milestone | 0d | 2015-05-31 | 2015-05-31 | 8200C0A510 |  |  |  | -20d | 0d | mandatory finish 2015-05-10 | ACCE | RETURND | o | A | 820 | 820_AB |
| 8200PRD0160 |  | Proposed Return date of Works Area 11.29D (Barging point) | milestone | 0d | 2015-05-31 | 2015-05-31 | 8200C0A510 |  |  |  | 367d | 346d | finish on or after 2015-05-10 | ACCE | RETURND | o | A | 820 | 820_AB |
| 8200PRD0170 |  | Proposed Return date of Works Area 11.29E (Barging point) | milestone | 0d | 2015-05-31 | 2015-05-31 | 8200C0A510 |  |  |  | 367d | 346d | finish on or after 2015-05-10 | ACCE | RETURND | o | A | 820 | 820_AB |
| 8200PRD0180 |  | Proposed Return date of Works Area 11.29F (Barging point) | milestone | 0d | 2015-05-31 | 2015-05-31 | 8200C0A510 |  |  |  | 367d | 346d | finish on or after 2015-05-10 | ACCE | RETURND | o | A | 820 | 820_AB |
|  | 3 | **811A Shaft** |  |  | 2015-08-27 | 2015-08-27 |  |  |  |  |  |  |  |  |  |  |  |  |  |
| 8200PRD0190 |  | Proposed Return date of Works Area 12.2 (811A shaft area) | milestone | 0d | 2015-08-27 | 2015-08-27 | 8200WKT520 FS+16d |  |  |  | 278d | 257d | finish on or after 2015-03-29 | ACCE | RETURND | o | A | 820 | 820_AB |
|  | 20 | **Return date** |  |  | 2010-08-09 | 2016-05-10 |  |  |  |  |  |  |  |  |  |  |  |  |  |
|  | 10 | **General** |  |  | 2010-08-09 | 2016-05-10 |  |  |  |  |  |  |  |  |  |  |  |  |  |
| 8200AC2320 |  | Works Area 11.29C | milestone | 0d | 2010-08-09 A | 2010-08-09 A |  | 100% | 2011-02-28 | 2011-02-28 |  |  | finish on or after 2010-07-18 | ACCE | RETURND | o | A | 820 | 820_AB |
| 8200AC2310 |  | Works Area 11.29B | milestone | 0d | 2010-08-13 A | 2010-08-13 A |  | 100% | 2011-02-28 | 2011-02-28 |  |  | finish on or after 2010-07-18 | ACCE | RETURND | o | A | 820 | 820_AB |
| 8200AC2355 |  | Works Area 11.29G | milestone | 0d | 2010-08-13 A | 2010-08-13 A |  | 100% | 2011-02-28 | 2011-02-28 |  |  | finish on or after 2010-07-18 | ACCE | RETURND | o |  |  | 820_AB |
| 8200AC2390 |  | Works Area 11.33A | milestone | 0d | 2012-01-07 A | 2012-01-07 A |  | 100% | 2016-05-10 | 2016-05-10 |  |  | finish on or after 2016-05-10 | ACCE | RETURND | o | A | 820 | 820_AB |
| 8200AC2400 |  | Works Area 11.33B | milestone | 0d | 2012-01-07 A | 2012-01-07 A |  | 100% | 2016-05-10 | 2016-05-10 |  |  | finish on or after 2016-05-10 | ACCE | RETURND | o | A | 820 | 820_AB |
| 8200AC2060 |  | Works Area 11.1 (Nan cheong Station - by XRL802) | milestone | 0d | 2012-12-30 A | 2012-12-30 A |  | 100% |  |  |  |  | finish on 2012-12-30 | ACCE | RETURND | o | A | 820 | 820_AB |
| 8200AC2070 |  | Works Area 11.2 (Nan cheong Station - by XRL802) | milestone | 0d | 2012-12-30 A | 2012-12-30 A |  | 100% |  |  |  |  | finish on 2012-12-30 | ACCE | RETURND | o | A | 820 | 820_AB |
| 8200AC2210 |  | Works Area 11.24 (Site 6) (Earliest) | milestone | 0d | 2013-03-31 A | 2013-03-31 A |  | 100% |  |  |  |  | finish on 2013-03-31 | ACCE | RETURND | o | A | 820 | 820_AB |
| 8200AC2230 |  | Works Area 11.25 (Site 6) (Earliest) | milestone | 0d | 2013-03-31 A | 2013-03-31 A |  | 100% |  |  |  |  | finish on 2013-03-31 | ACCE | RETURND | o | A | 820 | 820_AB |
| 8200AC2080 |  | Works Area 11.10A | milestone | 0d | 2013-09-10 A | 2013-09-10 A | 8200CCF752 | 100% |  |  |  |  | finish on or after 2013-09-10 | ACCE | RETURND | o | A | 820 | 820_AB |
| 8200AC2110 |  | Works Area 11.13 (Earliest) | milestone | 0d | 2013-12-29 A | 2013-12-29 A | 8200AC1110 | 100% |  |  |  |  | finish on 2013-12-29 | ACCE | RETURND | o | A | 820 | 820_AB |
| 8200AC2360 |  | Works Area 11.30 | milestone | 0d | 2013-12-29 A | 2013-12-29 A |  | 100% |  |  |  |  | finish on 2013-12-29 | ACCE | RETURND | o | A | 820 | 820_AB |
| 8200AC2010 |  | Works Area 10.1 (Subject to SLG Approval) | milestone | 0d | 2015-05-31 | 2015-05-31 | 8200CCF305, 8200CCF468, 8200CCF458, 8200CCF600, 8200CPC168 |  |  |  | -20d | 346d | finish on 2015-05-10 | ACCE | RETURND | o | A | 820 | 820_AB |
| 8200AC2020 |  | Works Area 10.2 | milestone | 0d | 2015-05-31 | 2015-05-31 | 8200CCF305 |  |  |  | -20d | 346d | finish on 2015-05-10 | ACCE | RETURND | o | A | 820 | 820_AB |
| 8200AC2030 |  | Works Area 10.3 | milestone | 0d | 2015-05-31 | 2015-05-31 | 8200CCF468, 8200CCF600, 8200CCF458 |  |  |  | -20d | 346d | finish on 2015-05-10 | ACCE | RETURND | o | A | 820 | 820_AB |
| 8200AC2040 |  | Works Area 10.3U subject to MTR Approval | milestone | 0d | 2015-05-31 | 2015-05-31 | 8200CCF305 |  |  |  | -20d | 346d | finish on 2015-05-10 | ACCE | RETURND | o | A | 820 | 820_AB |
| 8200AC2050 |  | Works Area 10.4 | milestone | 0d | 2015-05-31 | 2015-05-31 | 8200CCF600, 8200CCF468, 8200CCF458 |  |  |  | -20d | 346d | finish on 2015-05-10 | ACCE | RETURND | o | A | 820 | 820_AB |
| 8200AC2090 |  | Works Area 11.10B | milestone | 0d | 2015-05-31 | 2015-05-31 | 8200CCF752 |  |  |  | -20d | 346d | finish on 2015-05-10 | ACCE | RETURND | o | A | 820 | 820_AB |
| 8200AC2100 |  | Works Area 11.12 (Subject to SLG Approval) | milestone | 0d | 2015-05-31 | 2015-05-31 |  |  |  |  | -20d | 346d | finish on 2015-05-10 | ACCE | RETURND | o | A | 820 | 820_AB |
| 8200AC2120 |  | Works Area 11.13 (Latest) | milestone | 0d | 2015-05-31 | 2015-05-31 | 8200AC1110 |  |  |  | -1d | 346d | finish on 2015-05-29 | ACCE | RETURND | o | A | 820 | 820_AB |
| 8200AC2130 |  | Works Area 11.14 | milestone | 0d | 2015-05-31 | 2015-05-31 | 8200AC1120 |  |  |  | -20d | 346d | finish on 2015-05-10 | ACCE | RETURND | o | A | 820 | 820_AB |
| 8200AC2140 |  | Works Area 11.15 (Subject to SLG Approval) | milestone | 0d | 2015-05-31 | 2015-05-31 |  |  |  |  | -20d | 346d | finish on 2015-05-10 | ACCE | RETURND | o | A | 820 | 820_AB |
| 8200AC2150 |  | Works Area 11.21 (Subject to SLG Approval) | milestone | 0d | 2015-05-31 | 2015-05-31 | 8200CPC582, 8200CCG943, 8200CCG938, 8200CCF860 |  |  |  | -20d | 346d | finish on 2015-05-10 | ACCE | RETURND | o | A | 820 | 820_AB |
| 8200AC2160 |  | Works Area 11.21A (Subject to SLG Approval) | milestone | 0d | 2015-05-31 | 2015-05-31 | 8200C0A500, 8200C0A510 |  |  |  | -20d | 346d | finish on 2015-05-10 | ACCE | RETURND | o | A | 820 | 820_AB |
| 8200AC2180 |  | Works Area 11.23 (Site 6) | milestone | 0d | 2015-05-31 | 2015-05-31 |  |  |  |  | -62d | 346d | finish on 2015-03-29 | ACCE | RETURND | o | A | 820 | 820_AB |
| 8200AC2290 |  | Wks Area 11.28 | milestone | 0d | 2015-05-31 | 2015-05-31 | 8200AC1290 |  |  |  | -20d | 346d | finish on 2015-05-10 | ACCE | RETURND | o | A | 820 | 820_AB |
| 8200AC2300 |  | Works Area 11.29A | milestone | 0d | 2015-05-31 | 2015-05-31 |  |  |  |  | -20d | 346d | finish on 2015-05-10 | ACCE | RETURND | o | A | 820 | 820_AB |
| 8200AC2330 |  | Works Area 11.29D | milestone | 0d | 2015-05-31 | 2015-05-31 |  |  |  |  | -20d | 346d | finish on 2015-05-10 | ACCE | RETURND | o | A | 820 | 820_AB |
| 8200AC2340 |  | Works Area 11.29E | milestone | 0d | 2015-05-31 | 2015-05-31 |  |  |  |  | -20d | 346d | finish on 2015-05-10 | ACCE | RETURND | o | A | 820 | 820_AB |
| 8200AC2350 |  | Works Area 11.29F | milestone | 0d | 2015-05-31 | 2015-05-31 |  |  |  |  | -20d | 346d | finish on 2015-05-10 | ACCE | RETURND | o | A | 820 | 820_AB |
| 8200AC2370 |  | Works Area 11.31 | milestone | 0d | 2015-05-31 | 2015-05-31 | 8200CCG943, 8200CCG938 FF |  |  |  | -20d | 346d | finish on 2015-05-10 | ACCE | RETURND | o | A | 820 | 820_AB |
| 8200AC2380 |  | Works Area 11.32 | milestone | 0d | 2015-05-31 | 2015-05-31 | 8200CCG938, 8200CCG943 |  |  |  | -20d | 346d | finish on 2015-05-10 | ACCE | RETURND | o | A | 820 | 820_AB |
| 8200AC2540 |  | Works Area 12.2 (811A shaft area) | milestone | 0d | 2015-05-31 | 2015-05-31 |  |  |  |  | -62d | 346d | finish on 2015-03-29 | ACCE | RETURND | o | A | 820 | 820_AB |
| 8200AC2280 |  | Works Area 11.27 (Subject to SLG Approval) | milestone | 0d | 2015-08-11 | 2015-08-11 | 8200CCG1010, 8200CCF786 |  |  |  | -93d | 273d | finish on 2015-05-10 | ACCE | RETURND | o | A | 820 | 820_AB |
| 8200AC2190 |  | Works Area 11.23A (Site 6) (excl. Optional Works I3 & I4) | milestone | 0d | 2015-08-24 | 2015-08-24 | 8200CCE700 |  |  |  | -148d | 260d | finish on 2015-03-29 | ACCE | RETURND | o | A | 820 | 820_AB |
| 8200AC2200 |  | Works Area 11.23B (Site 6) (excl. Optional Works I3 & I4) | milestone | 0d | 2015-08-24 | 2015-08-24 | 8200CCE700 |  |  |  | -148d | 260d | finish on 2015-03-29 | ACCE | RETURND | o | A | 820 | 820_AB |
| 8200AC2220 |  | Works Area 11.24 (Site 6) (Latest) | milestone | 0d | 2015-08-24 | 2015-08-24 | 8200CCE700 |  |  |  | -148d | 260d | finish on 2015-03-29 | ACCE | RETURND | o | A | 820 | 820_AB |
| 8200AC2170 |  | Works Area 11.22 | milestone | 0d | 2015-12-27 | 2015-12-27 |  |  |  |  | 0d | 135d | finish on 2015-12-27 | ACCE | RETURND | o | A | 820 | 820_AB |
| 8200AC2240 |  | Works Area 11.25 (Latest) | milestone | 0d | 2016-04-03 | 2016-04-03 |  |  |  |  | 0d | 37d | finish on 2016-04-03 | ACCE | RETURND | o | A | 820 | 820_AB |
| 8200AC2250 |  | Works Area 11.26A (excl. Optional Works I3 & I4) | milestone | 0d | 2016-04-03 | 2016-04-03 |  |  |  |  | 0d |  | mandatory finish 2016-04-03 | ACCE | RETURND | o | A | 820 | 820_AB |
| 8200AC2260 |  | Works Area 11.26B | milestone | 0d | 2016-04-03 | 2016-04-03 |  |  |  |  | 0d | 37d | finish on 2016-04-03 | ACCE | RETURND | o | A | 820 | 820_AB |
| 8200AC2270 |  | Works Area 11.26C | milestone | 0d | 2016-04-03 | 2016-04-03 |  |  |  |  | 0d | 37d | finish on 2016-04-03 | ACCE | RETURND | o | A | 820 | 820_AB |
| 8200AC2410 |  | Works Area 12.1 (Subject to SLG Approval) | milestone | 0d | 2016-05-10 | 2016-05-10 | 8200TBC425a, 8200CPC936, 8200TBC858, 8200TBC415a, 8200TME160 |  |  |  | 0d |  | finish on 2016-05-10 | ACCE | RETURND | o | A | 820 | 820_AB |

Notes:
- 8200AC2110: Basis & Assumptions: - confirm by Engineer in Week 48/2012
- 8200AC2120: Basis & Assumptions: - confirm by Engineer in Week 48/2012

| ID | WBS | Activity | Type | Duration | Start | Finish | Predecessors | Complete | Planned start | Planned finish | Total float | Free float | Constraint | LEVEL 1 | LEVEL 2 | LEVEL 3 | SUMMARY | Contracts | 820_As-built |
| --- | --- | --- | --- | --- | --- | --- | --- | --- | --- | --- | --- | --- | --- | --- | --- | --- | --- | --- | --- |
|  | 30 | **Access & Return Dates for Option I3 & I4** |  |  | 2010-05-26 | 2016-04-03 |  |  |  |  |  |  |  |  |  |  |  |  |  |
|  | 10 | **General** |  |  | 2010-05-26 | 2016-04-03 |  |  |  |  |  |  |  |  |  |  |  |  |  |
| 8200AC1520 |  | Works Area 11.26A | milestone | 0d | 2010-05-26 A | 2010-05-26 A | 8200KD1020 FS+14d | 100% | 2011-01-08 | 2011-01-08 |  |  |  | ACCE | AC DATO | o | A | 820 | 820_AB |
| 8200AC1530 |  | Works Area 11.26B | milestone | 0d | 2010-05-26 A | 2010-05-26 A | 8200KD1020 FS+14d | 100% | 2011-01-08 | 2011-01-08 |  |  |  | ACCE | AC DATO | o | A | 820 | 820_AB |
| 8200AC1510 |  | Works Area 11.23B | milestone | 0d | 2010-06-03 A | 2010-06-03 A | 8200KD1020 FS+14d | 100% | 2011-01-08 | 2011-01-08 |  |  |  | ACCE | AC DATO | o | A | 820 | 820_AB |
| 8200AC2510 |  | Works Area 11.23B | milestone | 0d | 2015-11-22 | 2015-11-22 |  |  |  |  | 191d | 170d | finish on or after 2015-11-22 | ACCE | RE DATO | o | A | 820 | 820_AB |
| 8200AC2520 |  | Works Area 11.26A | milestone | 0d | 2016-04-03 | 2016-04-03 |  |  |  |  | 58d | 37d | finish on or after 2016-04-03 | ACCE | RE DATO | o | A | 820 | 820_AB |
| 8200AC2530 |  | Works Area 11.26B | milestone | 0d | 2016-04-03 | 2016-04-03 |  |  |  |  | 58d | 37d | finish on or after 2016-04-03 | ACCE | RE DATO | o | A | 820 | 820_AB |
|  | 820E | **Programme Data** |  |  | 2010-11-28 | 2015-07-24 |  |  |  |  |  |  |  |  |  |  |  |  |  |
|  | 10 | **Schedule of Power On Dates** |  |  | 2015-02-05 | 2015-02-05 |  |  |  |  |  |  |  |  |  |  |  |  |  |
| 8200PD1010 |  | Permanent LV Power On | milestone | 0d | 2015-02-05 A | 2015-02-05 A |  | 100% |  |  |  |  | finish on 2014-11-09 | PROG DATA | CLP POW | o | A | 820 | 820_AB |
|  | 10 | **General** |  |  |  |  |  |  |  |  |  |  |  |  |  |  |  |  |  |
|  | 20 | **Works Required for Statutory Inspection** |  |  | 2015-07-24 | 2015-07-24 |  |  |  |  |  |  |  |  |  |  |  |  |  |
| 8200PD2010 |  | Complete all External Water works within the Site and Connect to Governemnt Water Mains | milestone | 0d | 2015-07-24 | 2015-07-24 | 8200CCE705 |  |  |  | 312d | 291d | finish on or after 2014-11-23 | PROG DATA | STAT IN | o | 1 | 820 | 820_AB |
| 8200PD2020 |  | Complete all External Telephone Drawpits and Ducts within the Site | milestone | 0d | 2015-07-24 | 2015-07-24 | 8200CCE710 |  |  |  | -208d | 291d | finish on 2014-12-28 | PROG DATA | STAT IN | o | 1 | 820 | 820_AB |
|  | 10 | **General** |  |  |  |  |  |  |  |  |  |  |  |  |  |  |  |  |  |
|  | 30 | **Temporary Access Opening for Designated Contractors** |  |  | 2013-08-19 | 2015-03-30 |  |  |  |  |  |  |  |  |  |  |  |  |  |
| 8200PD3010 |  | Access Central Opening within Launching Shaft |  | 497d | 2013-08-19 A | 2015-03-30 A | 8200KD3010 | 100% | 2013-08-26 | 2015-01-04 |  |  |  | PROG DATA | AC LAUS | o | 1 | 820 | 820_AB |
|  | 10 | **General** |  |  |  |  |  |  |  |  |  |  |  |  |  |  |  |  |  |
|  | 40 | **Close out Temporary Access Opening & Structure within Launching Shaft** |  |  | 2013-12-01 | 2015-05-31 |  |  |  |  |  |  |  |  |  |  |  |  |  |
|  | 1 | **Area 1 - South Opening, South D/T** |  |  | 2013-12-01 | 2014-05-17 |  |  |  |  |  |  |  |  |  |  |  |  |  |
| 8200PD4010 |  | Area 1 - Walkway, Side Walls and Above-Track Roof Slab |  | 169d | 2013-12-01 A | 2014-05-17 A |  | 100% | 2013-12-01 | 2014-05-18 |  |  | mandatory start 2013-12-01 | PROG DATA | CL AC O | o | 1 | 820 | 820_AB |
|  | 2 | **Area 2 - Central Opening, South D/T** |  |  | 2014-05-19 | 2014-06-15 |  |  |  |  |  |  |  |  |  |  |  |  |  |
| 8200PD4020 |  | Area 2 - 1st cast for Walkway and External wall (Dkb137+850 to 137+885) |  | 28d | 2014-05-19 A | 2014-06-15 A |  | 100% |  |  |  |  | mandatory start 2014-05-19 | PROG DATA | CL AC O | o | 1 | 820 | 820_AB |

| ID | WBS | Activity | Type | Duration | Start | Finish | Predecessors | Complete | Planned start | Planned finish | Total float | Free float | Constraint | LEVEL 1 | LEVEL 2 | LEVEL 3 | SUMMARY | Contracts | 820_As-built |
| --- | --- | --- | --- | --- | --- | --- | --- | --- | --- | --- | --- | --- | --- | --- | --- | --- | --- | --- | --- |
|  | 3 | **Area 3 - South Opening, South U/T** |  |  | 2014-09-01 | 2015-03-30 |  |  |  |  |  |  |  |  |  |  |  |  |  |
| 8200PD4040 |  | Area 3 - 1st cast for Walkway, External wall and Internal wall |  | 112d | 2014-09-01 A | 2015-01-30 A |  | 100% | 2014-09-01 | 2014-12-21 |  |  | mandatory start 2014-09-01 | PROG DATA | CL AC O | o | 1 | 820 | 820_AB |
| 8200PD4070 |  | Area 3 - 2nd cast for Above-Track Roof Slab |  | 35d | 2014-11-15 A | 2015-03-30 A |  | 100% | 2014-11-15 | 2014-12-19 |  |  | mandatory start 2014-12-22 | PROG DATA | CL AC O | o | 1 | 820 | 820_AB |
|  | 4 | **Area 4A - Central Opening, South U/T** |  |  | 2014-12-29 | 2015-01-30 |  |  |  |  |  |  |  |  |  |  |  |  |  |
| 8200PD4050 |  | Area 4A - Walkway and External wall (Dkb137+850 to 137+885) |  | 28d | 2014-12-29 A | 2015-01-30 A |  | 100% | 2014-12-29 | 2015-01-25 |  |  | mandatory start 2014-12-29 | PROG DATA | CL AC O | o | 1 | 820 | 820_AB |
|  | 5 | **Area 4B - Central Opening** |  |  | 2014-12-29 | 2015-01-30 |  |  |  |  |  |  |  |  |  |  |  |  |  |
| 8200PD4030 |  | Area 4B - 2nd cast for Internal walls and Central portion of Above-Track Roof Slab with falsework |  | 42d | 2014-12-29 A | 2015-01-30 A |  | 100% | 2014-12-29 | 2015-02-08 |  |  | mandatory start 2014-12-29 | PROG DATA | CL AC O | o | 1 | 820 | 820_AB |
|  | 6 | **Area 4C - Central Opening and Access for 830 Works Train** |  |  | 2014-12-29 | 2015-03-30 |  |  |  |  |  |  |  |  |  |  |  |  |  |
| 8200PD4060 |  | Area 4C - Close remaining Above-Track Roof Slab & RC duct btw Dkb137+850 to 137+885 |  | 112d | 2014-12-29 A | 2015-03-30 A | 8200PD3010 | 100% | 2014-12-29 | 2015-04-19 |  |  |  | PROG DATA | CL AC O | o | 1 | 820 | 820_AB |
|  | 7 | **Site 6 - Surafce Works Area under 30T Gantry Crane at Central Opening** |  |  | 2015-05-31 | 2015-05-31 |  |  |  |  |  |  |  |  |  |  |  |  |  |
| 8200PD4080 |  | Site 6 - Access to works area under 30T gantry to be given to 830 | milestone | 0d | 2015-05-31 | 2015-05-31 |  |  |  |  | -480d | 0d | mandatory start 2014-02-05 | PROG DATA | CL AC O | o | 1 | 820 | 820_AB |
|  | 8 | **Area 5 - 811A C&C Tunnel** |  |  |  |  |  |  |  |  |  |  |  |  |  |  |  |  |  |
|  | 50 | **TBM Retrieval Shaft at Hoi Ting Road** |  |  | 2011-01-23 | 2011-06-18 |  |  |  |  |  |  |  |  |  |  |  |  |  |
|  | 10 | **General** |  |  | 2011-01-23 | 2011-06-18 |  |  |  |  |  |  |  |  |  |  |  |  |  |
| 8200PD6005 |  | Completion D-Wall of TBM Retrieval Shaft at Hoi Ting Rd. by 811A | milestone | 0d | 2011-01-23 A | 2011-01-23 A |  | 100% | 2011-02-28 | 2011-02-28 |  |  | finish on or after 2011-01-23 | PROG DATA | TBM RSH | o |  |  | 820_AB |
| 8200PD6010 |  | Earliest Access Date - Ground Level of Works Area 12.2 | milestone | 0d | 2011-02-02 A | 2011-02-02 A |  | 100% | 2011-02-28 | 2011-02-28 |  |  | start on 2011-01-24 | PROG DATA | TBM RSH | o | 1 | 820 | 820_AB |
| 8200PD6030 |  | Ground Treatment Completion by 820 | milestone | 0d | 2011-06-18 A | 2011-06-18 A | 8200CEC120 | 100% | 2011-06-19 | 2011-06-19 |  |  | finish on or after 2011-06-19 | PROG DATA | TBM RSH | o | 1 | 820 | 820_AB |
|  | 60 | **Obstruction Removed by Other Project Contractor** |  |  | 2011-11-13 | 2013-04-30 |  |  |  |  |  |  |  |  |  |  |  |  |  |
|  | 10 | **General** |  |  | 2011-11-13 | 2013-04-30 |  |  |  |  |  |  |  |  |  |  |  |  |  |
| 8200PD7020 |  | Remove Obstructions Below CLP Equipment Building (by XRL 805) | milestone | 0d | 2011-11-13 A | 2011-11-13 A |  | 100% | 2012-01-15 | 2012-01-15 |  |  | finish on or after 2011-11-13 | PROG DATA | OBSTRUCTIO | o | 1 | 820 | 820_AB |
| 8200PD7010 |  | D/T Remove Obstructions Below Nam Cheong Property Development (by XRL 802) | milestone | 0d | 2012-04-30 A | 2012-04-30 A |  | 100% |  |  |  |  | finish on or after 2012-04-30 | PROG DATA | OBSTRUCTIO | o | 1 | 820 | 820_AB |
| 8200PD7015 |  | U/T Remove Obstructions Below Nam Cheong Property Development (by XRL 802) | milestone | 0d | 2013-04-30 A | 2013-04-30 A |  | 100% |  |  |  |  | finish on or after 2013-04-30 | PROG DATA | OBSTRUCTIO | o | 1 | 820 | 820_AB |
|  | 70 | **Engineer's Office** |  |  | 2010-11-28 | 2010-11-28 |  |  |  |  |  |  |  |  |  |  |  |  |  |
|  | 10 | **General** |  |  | 2010-11-28 | 2010-11-28 |  |  |  |  |  |  |  |  |  |  |  |  |  |
| 8200PD8010 |  | Engineer's Office Completion with Furniture | milestone | 0d | 2010-11-28 A | 2010-11-28 A | 8200C0A110 | 100% | 2011-04-17 | 2011-04-17 |  |  | finish on or after 2010-11-28 | PROG DATA | ENG OFF | o | A | 820 | 820_AB |

| ID | WBS | Activity | Type | Duration | Start | Finish | Complete | Planned start | Planned finish | Constraint | Classify | LEVEL 1 | LEVEL 2 | LEVEL 3 | SUMMARY | LEVEl 4 | Contracts | Location of Works | Phases of Works | 820_As-built |
| --- | --- | --- | --- | --- | --- | --- | --- | --- | --- | --- | --- | --- | --- | --- | --- | --- | --- | --- | --- | --- |
|  | 3 | **Access Dates for Designated Contractors** |  |  | 2013-08-19 | 2015-04-27 |  |  |  |  |  |  |  |  |  |  |  |  |  |  |
|  | 1 | **827 - Supply and Installation of Cross Passage Doors** |  |  | 2013-08-19 | 2015-01-26 |  |  |  |  |  |  |  |  |  |  |  |  |  |  |
| 8200IFC110 |  | 827 - D/T All Cross Passages for Door Frame and Door installation, from northern contract limit to CH137+860 | milestone | 0d | 2013-08-19 A | 2013-08-19 A | 100% | 2013-08-26 | 2013-08-26 | start on 2013-08-26 | 1 | CC C | TUNNEL WKS | ACCD DC | A | AD827 | 820 |  |  |  |
| 8200IFC105 |  | 827 - D/T All Cross Passages for Door Frame & Door Installation, from CH137+860 to Southern contract limit | milestone | 0d | 2014-05-19 A | 2014-05-19 A | 100% |  |  | start on 2014-05-19 |  | CC C | TUNNEL WKS | ACCD DC | A | AD827 | 820 |  |  |  |
| 8200IFC112 |  | 827 - U/T All Cross Passages for Door Frame & Door Installation, from Northern contract limit to CH137+860 | milestone | 0d | 2014-06-02 A | 2014-06-02 A | 100% |  |  | start on 2014-06-02 |  | CC C | TUNNEL WKS | ACCD DC | A | AD827 | 820 |  |  |  |
| 8200IFC115 |  | 827 - U/T All Cross Passages for Door Frame & Door Installation, from CH137+860 to 950m from the Southern contract limit | milestone | 0d | 2014-12-22 A | 2014-12-22 A | 100% |  |  | start on 2014-12-22 |  | CC C | TUNNEL WKS | ACCD DC | A | AD827 | 820 |  |  |  |
| 8200IFC117 |  | 827 - U/T All Cross Passages for Door Frame & Door Installation, from CH137+860 to the Southern contract limit | milestone | 0d | 2015-01-26 A | 2015-01-26 A | 100% |  |  | start on 2015-01-26 |  | CC C | TUNNEL WKS | ACCD DC | A | AD827 | 820 |  |  |  |
|  | 2 | **830 - Trackwork and Overhead Line System** |  |  | 2013-08-19 | 2015-01-26 |  |  |  |  |  |  |  |  |  |  |  |  |  |  |
| 8200IFD100 |  | 830 - D/T Tunnel from the Northern contract limit to CH137+860 | milestone | 0d | 2013-08-19 A | 2013-08-19 A | 100% |  |  | start on 2013-08-26 |  | CC D | ACC DAT | ACCD DC | A |  | 820 | 2020 | C090 | 820_AB |
| 8200IFD105 |  | 830 - D/T Tunnel from CH137+860 to Southern contract limit and C&C section within Hoi Ting Road Shaft | milestone | 0d | 2014-05-19 A | 2014-05-19 A | 100% |  |  | start on 2014-05-19 |  | CC D | ACC DAT | ACCD DC | A |  | 820 | 2020 | C090 | 820_AB |
| 8200IFD108 |  | 830 - U/T Tunnel from the Northern contract limit to CH137+860 | milestone | 0d | 2014-06-02 A | 2014-06-02 A | 100% |  |  | start on 2014-06-02 |  | CC D | ACC DAT | ACCD DC | A |  | 820 | 2020 | C090 | 820_AB |
| 8200IFD110 |  | 830 - U/T Tunnel from CH137+860 to 950m from the Southern contract limit | milestone | 0d | 2014-12-22 A | 2014-12-22 A | 100% |  |  | start on 2014-12-22 |  | CC D | ACC DAT | ACCD DC | A |  | 820 | 2020 | C090 | 820_AB |
| 8200IFD112 |  | 830 - U/T Tunnel from CH137+860 to the Southern contract limit and C&C section within Hoi Ting Road Shaft | milestone | 0d | 2015-01-26 A | 2015-01-26 A | 100% |  |  | start on 2015-01-26 |  | CC D | ACC DAT | ACCD DC | A |  | 820 | 2020 | C090 | 820_AB |
|  | 3 | **841A - Signalling System - Trackside Equipment** |  |  | 2014-04-21 | 2015-04-27 |  |  |  |  |  |  |  |  |  |  |  |  |  |  |
| 8200IFC147 |  | 841A - Nam Cheong Ventilation Building (VB7) - SER (Signalling-Trackside) | milestone | 0d | 2014-04-21 A | 2014-04-21 A | 100% |  |  | start on 2014-04-21 |  | CC C | TUNNEL WKS | ACCD DC | A |  | 820 |  |  |  |
| 8200IFC285 |  | 841A - D/T Tunnel from the Northern contract limit to CH137+860 | milestone | 0d | 2014-06-02 A | 2014-06-02 A | 100% |  |  | start on 2014-06-02 |  | CC C | TUNNEL WKS | ACCD DC | A |  | 820 |  |  |  |
| 8200IFC145 |  | 841A - U/T Tunnel from the Northern contract limit to CH137+860 | milestone | 0d | 2014-09-29 A | 2014-09-29 A | 100% | 2014-11-30 | 2014-11-30 | start on 2014-09-29 |  | CC C | TUNNEL WKS | ACCD DC | A |  | 820 |  |  |  |
| 8200IFC295 |  | 841A - D/T Tunnel from CH137+860 to the Southern contract limit and C&C section within Hoi Ting Road Shaft | milestone | 0d | 2014-09-29 A | 2014-09-29 A | 100% |  |  | start on 2014-09-29 |  | CC C | TUNNEL WKS | ACCD DC | A |  | 820 |  |  |  |
| 8200IFC140 |  | 841A - U/T Tunnel from CH137+860 to the Southern contract limit and C&C section within Hoi Ting Road Shaft | milestone | 0d | 2015-04-27 A | 2015-04-27 A | 100% |  |  | start on 2015-04-27 |  | CC C | TUNNEL WKS | ACCD DC | A |  | 820 |  |  |  |
|  | 4 | **841B - Signalling System - Train Borne Equipment (Rolling Stock + Works / Rescue Trains)** |  |  | 2014-04-21 | 2015-04-27 |  |  |  |  |  |  |  |  |  |  |  |  |  |  |
| 8200IFC157 |  | 841B - Nam Cheong Ventilation Building (VB7) - SER (Signalling-Train Borne) | milestone | 0d | 2014-04-21 A | 2014-04-21 A | 100% |  |  | start on 2014-04-21 |  | CC C | TUNNEL WKS | ACCD DC | A |  | 820 |  |  |  |
| 8200IFC155 |  | 841B - D/T Tunnel from the Northern contract limit to CH137+860 (Signalling-Train Borne) | milestone | 0d | 2014-06-02 A | 2014-06-02 A | 100% |  |  | start on 2014-06-02 |  | CC C | TUNNEL WKS | ACCD DC | A |  | 820 |  |  |  |
| 8200IFC150 |  | 841B - U/T Tunnel from the Northern contract limit to CH137+860 (Signalling-Train Borne) | milestone | 0d | 2014-09-29 A | 2014-09-29 A | 100% |  |  | start on 2014-09-29 |  | CC C | TUNNEL WKS | ACCD DC | A |  | 820 |  |  |  |
| 8200IFC315 |  | 841B - D/T Tunnel from CH137+860 to the Southern contract limit and C&C section within Hoi Ting Road Shaft | milestone | 0d | 2014-09-29 A | 2014-09-29 A | 100% |  |  | start on 2014-09-29 |  | CC C | TUNNEL WKS | ACCD DC | A |  | 820 |  |  |  |
| 8200IFC305 |  | 841B - U/T Tunnel from CH137+860 to the Southern contract limit and C&C section within Hoi Ting Road Shaft | milestone | 0d | 2015-04-27 A | 2015-04-27 A | 100% |  |  | start on 2015-04-27 |  | CC C | TUNNEL WKS | ACCD DC | A |  | 820 |  |  |  |

| ID | WBS | Activity | Type | Duration | Start | Finish | Complete | Constraint | LEVEL 1 | LEVEL 2 | LEVEL 3 | SUMMARY | Contracts |
| --- | --- | --- | --- | --- | --- | --- | --- | --- | --- | --- | --- | --- | --- |
|  | 5 | **843 - Tunnel Environmental Control System** |  |  | 2014-02-24 | 2015-04-20 |  |  |  |  |  |  |  |
| 8200IFC275 |  | 843 - Nam Cheong Ventilation Building (VB7) - TVF Room and Compressed & Receiver Air Room | milestone | 0d | 2014-02-24 A | 2014-02-24 A | 100% | start on 2014-02-24 | CC C | TUNNEL WKS | ACCD DC | A | 820 |
| 8200IFC335 |  | 843 - Nam Cheong Ventilation Building (VB7) - Above track slab at both up and down tracks btw GL 1-9 | milestone | 0d | 2014-03-24 A | 2014-03-24 A | 100% | start on 2014-03-24 | CC C | TUNNEL WKS | ACCD DC | A | 820 |
| 8200IFC325 |  | 843 - Nam Cheong Ventilation Building (VB7) - Tunnel ECS Control Room | milestone | 0d | 2014-07-14 A | 2014-07-14 A | 100% | start on 2014-07-14 | CC C | TUNNEL WKS | ACCD DC | A | 820 |
| 8200IFC345 |  | 843 - Nam Cheong Shaft C & C tunnels - Above track slab at both up and down tracks btw GL 9-16 | milestone | 0d | 2015-04-20 A | 2015-04-20 A | 100% | start on 2015-04-20 | CC C | TUNNEL WKS | ACCD DC | A | 820 |
|  | 6 | **844 - 11kV Power Distribution** |  |  | 2014-06-02 | 2015-04-27 |  |  |  |  |  |  |  |
| 8200IFC130 |  | 844 - D/T Tunnel from the Northern contract limit to CH137+860 (11kV Power) | milestone | 0d | 2014-06-02 A | 2014-06-02 A | 100% | start on 2014-06-02 | CC C | TUNNEL WKS | ACCD DC | A | 820 |
| 8200IFC137 |  | 844 - Nam Cheong Ventilation Building (VB7) - Power Supply Electrical Rooms (11kV Power) | milestone | 0d | 2014-09-08 A | 2014-09-08 A | 100% | start on 2014-09-08 | CC C | TUNNEL WKS | ACCD DC | A | 820 |
| 8200IFC132 |  | 844 - D/T Tunnel from CH137+860 to Southern contract limit and C&C section within Hoi Ting Road Shaft (11kV Power) | milestone | 0d | 2014-09-29 A | 2014-09-29 A | 100% | start on 2014-09-29 | CC C | TUNNEL WKS | ACCD DC | A | 820 |
| 8200IFC134 |  | 844 - U/T Tunnel from the Northern contract limit to CH137+860 (11kV Power) | milestone | 0d | 2014-09-29 A | 2014-09-29 A | 100% | start on 2014-09-29 | CC C | TUNNEL WKS | ACCD DC | A | 820 |
| 8200IFC136 |  | 844 - U/T Tunnel from CH137+860 to the Southern contract limit and C&C section within Hoi Ting Road Shaft (11kV Power) | milestone | 0d | 2015-04-27 A | 2015-04-27 A | 100% | start on 2015-04-27 | CC C | TUNNEL WKS | ACCD DC | A | 820 |
|  | 8 | **846 - Trackside Auxililaries** |  |  | 2014-02-24 | 2015-04-27 |  |  |  |  |  |  |  |
| 8200IFC127 |  | 846 - Nam Cheong Ventilation Building (VB7) Trackside LV Switch Room | milestone | 0d | 2014-02-24 A | 2014-02-24 A | 100% | start on 2014-02-24 | CC C | TUNNEL WKS | ACCD DC | A | 820 |
| 8200IFC120 |  | 846 - D/T Tunnel from the Northern contract limit to CH137+860 (Trackside Aux.) | milestone | 0d | 2014-06-02 A | 2014-06-02 A | 100% | start on 2014-06-02 | CC C | TUNNEL WKS | ACCD DC | A | 820 |
| 8200IFC122 |  | 846 - D/T Tunnel from CH137+860 to Southern contract limit and C&C section within Hoi Ting Road Shaft (Trackside Aux.) | milestone | 0d | 2014-09-29 A | 2014-09-29 A | 100% | start on 2014-09-29 | CC C | TUNNEL WKS | ACCD DC | A | 820 |
| 8200IFC124 |  | 846 - U/T Tunnel from the Northern contract limit to CH137+860 (Trackside Aux.) | milestone | 0d | 2014-09-29 A | 2014-09-29 A | 100% | start on 2014-09-29 | CC C | TUNNEL WKS | ACCD DC | A | 820 |
| 8200IFC126 |  | 846 - U/T Tunnel from CH137+860 to the Southern contract limit and C&C section within Hoi Ting Road Shaft | milestone | 0d | 2015-04-27 A | 2015-04-27 A | 100% | start on 2015-04-27 | CC C | TUNNEL WKS | ACCD DC | A | 820 |
|  | 9 | **847 - Lifts** |  |  | 2014-07-14 | 2014-07-14 |  |  |  |  |  |  |  |
| 8200IFC255 |  | 847 - Nam Cheong Ventilation Building (VB7) - Lift Shaft adn Lift Machine Room | milestone | 0d | 2014-07-14 A | 2014-07-14 A | 100% | start on 2014-07-14 | CC C | TUNNEL WKS | ACCD DC | A | 820 |
|  | 10 | **849 - Radio Communications System** |  |  | 2014-02-24 | 2015-04-27 |  |  |  |  |  |  |  |
| 8200IFC180 |  | 849 - Nam Cheong Ventilation Building (VB7) - TER and CTER (Radio Communications) | milestone | 0d | 2014-02-24 A | 2014-02-24 A | 100% | start on 2014-02-24 | CC C | TUNNEL WKS | ACCD DC | A | 820 |
| 8200IFC355 |  | 849 - Nam Cheong Ventilation Building (VB7) - SER (Radio Communications) | milestone | 0d | 2014-04-21 A | 2014-04-21 A | 100% | start on 2014-04-21 | CC C | TUNNEL WKS | ACCD DC | A | 820 |
| 8200IFC375 |  | 849 - D/T Tunnel from the Northern contract limit to CH137+860 (Radio Communications) | milestone | 0d | 2014-06-02 A | 2014-06-02 A | 100% | start on 2014-06-02 | CC C | TUNNEL WKS | ACCD DC | A | 820 |
| 8200IFC365 |  | 849 - Nam Cheong Ventilation Building (VB7) - Corridors and Roof (Radio Communications) | milestone | 0d | 2014-07-14 A | 2014-07-14 A | 100% | start on 2014-07-14 | CC C | TUNNEL WKS | ACCD DC | A | 820 |
| 8200IFC185 |  | 849 - U/T Tunnel from the Northern contract limit to CH137+860 (Radio Communications) | milestone | 0d | 2014-09-29 A | 2014-09-29 A | 100% | start on 2014-09-29 | CC C | TUNNEL WKS | ACCD DC | A | 820 |
| 8200IFC385 |  | 849 - D/T Tunnel from CH137+860 to the Southern contract limit and C&C section within Hoi Ting Road Shaft | milestone | 0d | 2014-09-29 A | 2014-09-29 A | 100% | start on 2014-09-29 | CC C | TUNNEL WKS | ACCD DC | A | 820 |
| 8200IFC188 |  | 849 - U/T Tunnel from CH137+860 to the Southern contract limit and C&C section within Hoi Ting Road Shaft | milestone | 0d | 2015-04-27 A | 2015-04-27 A | 100% | start on 2015-04-27 | CC C | TUNNEL WKS | ACCD DC | A | 820 |

| ID | WBS | Activity | Type | Duration | Start | Finish | Predecessors | Complete | Planned start | Planned finish | Constraint | LEVEL 1 | LEVEL 2 | LEVEL 3 | SUMMARY | Contracts | Location of Works | Phases of Works |
| --- | --- | --- | --- | --- | --- | --- | --- | --- | --- | --- | --- | --- | --- | --- | --- | --- | --- | --- |
|  | 11 | **850 - Passenger Mobile Communication System** |  |  | 2014-02-24 | 2015-04-27 |  |  |  |  |  |  |  |  |  |  |  |  |
| 8200IFC162 |  | 850 - Nam Cheong Ventilation Building (VB7) - TER and CTER (Passenger Mobile Communication) | milestone | 0d | 2014-02-24 A | 2014-02-24 A |  | 100% |  |  | start on 2014-02-24 | CC C | TUNNEL WKS | ACCD DC | A | 820 |  |  |
| 8200IFC165 |  | 850 - D/T Tunnel from the Northern contract limit to CH137+860 (Passenger Mobile Communication) | milestone | 0d | 2014-06-02 A | 2014-06-02 A |  | 100% |  |  | start on 2014-06-02 | CC C | TUNNEL WKS | ACCD DC | A | 820 |  |  |
| 8200IFC168 |  | 850 - U/T Tunnel from the Northern contract limit to CH137+860 (Passenger Mobile Communication) | milestone | 0d | 2014-09-29 A | 2014-09-29 A |  | 100% |  |  | start on 2014-09-29 | CC C | TUNNEL WKS | ACCD DC | A | 820 |  |  |
| 8200IFC405 |  | 850 - D/T Tunnel from CH137+860 to the Southern contract limit and C&C section within Hoi Ting Road Shaft | milestone | 0d | 2014-09-29 A | 2014-09-29 A |  | 100% |  |  | start on 2014-09-29 | CC C | TUNNEL WKS | ACCD DC | A | 820 |  |  |
| 8200IFC395 |  | 850 - U/T Tunnel from CH137+860 to the Southern contract limit and C&C section within Hoi Ting Road Shaft | milestone | 0d | 2015-04-27 A | 2015-04-27 A |  | 100% |  |  | start on 2015-04-27 | CC C | TUNNEL WKS | ACCD DC | A | 820 |  |  |
|  | 12 | **851 - Fixed Communication System** |  |  | 2014-02-24 | 2015-04-27 |  |  |  |  |  |  |  |  |  |  |  |  |
| 8200IFC172 |  | 851- Nam Cheong Ventilation Building (VB7) - TER and CTER (Fixed Communication) | milestone | 0d | 2014-02-24 A | 2014-02-24 A |  | 100% |  |  | start on 2014-02-24 | CC C | TUNNEL WKS | ACCD DC | A | 820 |  |  |
| 8200IFC175 |  | 851 - D/T Tunnel from the Northern contract limit to CH137+860 (Fixed Communication) | milestone | 0d | 2014-06-02 A | 2014-06-02 A |  | 100% |  |  | start on 2014-06-02 | CC C | TUNNEL WKS | ACCD DC | A | 820 |  |  |
| 8200IFC178 |  | 851 - U/T Tunnel from the Northern contract limit to CH137+860 (Fixed Communication) | milestone | 0d | 2014-09-29 A | 2014-09-29 A |  | 100% |  |  | start on 2014-09-29 | CC C | TUNNEL WKS | ACCD DC | A | 820 |  |  |
| 8200IFC425 |  | 851 - D/T Tunnel from CH137+860 to Southern contract limit and C&C section within Hoi Ting Road Shaft | milestone | 0d | 2014-09-29 A | 2014-09-29 A |  | 100% |  |  | start on 2014-09-29 | CC C | TUNNEL WKS | ACCD DC | A | 820 |  |  |
| 8200IFC415 |  | 851 - U/T Tunnel from CH137+860 to the Southern contract limit and C&C section within Hoi Ting Road Shaft | milestone | 0d | 2015-04-27 A | 2015-04-27 A |  | 100% |  |  | start on 2015-04-27 | CC C | TUNNEL WKS | ACCD DC | A | 820 |  |  |
|  | 13 | **853 - Main Control System** |  |  | 2014-02-24 | 2014-02-24 |  |  |  |  |  |  |  |  |  |  |  |  |
| 8200IFC225 |  | 853- Nam Cheong Ventilation Building (VB7) - TER and CTER (Main Control) | milestone | 0d | 2014-02-24 A | 2014-02-24 A |  | 100% |  |  | start on 2014-02-24 | CC C | TUNNEL WKS | ACCD DC | A | 820 |  |  |
|  | 14 | **854 - Security Access Management System (SAMS)** |  |  | 2014-08-18 | 2014-08-18 |  |  |  |  |  |  |  |  |  |  |  |  |
| 8200IFD150 |  | 854 - The doors with SAMS | milestone | 0d | 2014-08-18 A | 2014-08-18 A |  | 100% |  |  | start on 2014-08-18 | CC D | ACC DAT | ACCD DC | A | 820 | 2020 | C090 |
|  | 15 | **855 - Building Services for Tunnel Ventilation Buildings & Emergency Rescue Station** |  |  | 2013-12-23 | 2014-05-12 |  |  |  |  |  |  |  |  |  |  |  |  |
| 8200IFC435 |  | 855 - VB7 - All rooms and common areas at Level L1, UL2, L1 and UL1 (Excl. staircases, Lift shaft & CLP risers) | milestone | 0d | 2013-12-23 A | 2013-12-23 A |  | 100% |  |  | start on 2013-12-23 | CC C | TUNNEL WKS | ACCD DC | A | 820 |  |  |
| 8200IFC245 |  | 855 - VB7 - All rooms and common areas at track level and above track level(Excl. staircases, Lift shaft & CLP risers) | milestone | 0d | 2014-03-03 A | 2014-03-03 A |  | 100% |  |  | start on 2014-03-03 | CC C | TUNNEL WKS | ACCD DC | A | 820 |  |  |
| 8200IFC235 |  | 855-All rooms and common areas - corridors, lobbies etc within VB7 Excl. the parts of the VB7 under Ref. 4C(i) & 4C(ii) | milestone | 0d | 2014-05-12 A | 2014-05-12 A |  | 100% |  |  | start on 2014-05-12 | CC C | TUNNEL WKS | ACCD DC | A | 820 |  |  |
|  | 820F | **System Assurance Schedule** |  |  | 2010-07-05 | 2010-11-29 |  |  |  |  |  |  |  |  |  |  |  |  |
|  | 10 | **System Assurance Schedule** |  |  | 2010-07-05 | 2010-11-29 |  |  |  |  |  |  |  |  |  |  |  |  |
|  | 10 | **General** |  |  | 2010-07-05 | 2010-11-29 |  |  |  |  |  |  |  |  |  |  |  |  |
| 8200SA0080 |  | System Assurance Plan | milestone | 0d | 2010-07-05 A | 2010-07-05 A |  | 100% | 2011-01-08 | 2011-01-08 | finish on or after 2010-08-28 | SYS ASS SC | Assurance | o | 1 | 820 |  |  |
| 8200SA0100 |  | HAZOP Workshop | milestone | 0d | 2010-07-05 A | 2010-07-05 A | 8200KD1020 FS+108d | 100% |  |  | finish on or after 2010-08-28 | SYS ASS SC | Assurance | o | 1 | 820 |  |  |
| 8200SA0110 |  | PHA Activity | milestone | 0d | 2010-07-05 A | 2010-07-05 A |  | 100% |  |  | finish on or after 2010-08-28 | SYS ASS SC | Assurance | o | 1 | 820 |  |  |
| 8200SA0120 |  | Establish Hazard Log | milestone | 0d | 2010-07-05 A | 2010-07-05 A |  | 100% |  |  | finish on or after 2010-08-28 | SYS ASS SC | Assurance | o | 1 | 820 |  |  |
| 8200SA0170 |  | Determination Safety Assessment | milestone | 0d | 2010-07-05 A | 2010-07-05 A |  | 100% | 2011-01-08 | 2011-01-08 | finish on or after 2010-08-28 | SYS ASS SC | Assurance | o | 1 | 820 |  |  |
| 8200SA0130 |  | System Hazard Analysis | milestone | 0d | 2010-11-29 A | 2010-11-29 A |  | 100% | 2011-01-08 | 2011-01-08 | finish on or after 2010-11-28 | SYS ASS SC | Assurance | o | 1 | 820 |  |  |
| 8200SA0140 |  | Interface Hazard Analysis | milestone | 0d | 2010-11-29 A | 2010-11-29 A |  | 100% |  |  | finish on or after 2010-11-28 | SYS ASS SC | Assurance | o | 1 | 820 |  |  |
| 8200SA0150 |  | Operating & Support Hazard Analysis | milestone | 0d | 2010-11-29 A | 2010-11-29 A |  | 100% |  |  | finish on or after 2010-11-28 | SYS ASS SC | Assurance | o | 1 | 820 |  |  |
| 8200SA0160 |  | Hazard Analysis Report | milestone | 0d | 2010-11-29 A | 2010-11-29 A | 8200SA0150 | 100% |  |  | finish on or after 2010-11-28 | SYS ASS SC | Assurance | o | 1 | 820 |  |  |

| ID | WBS | Activity | Type | Duration | Start | Finish | Predecessors | Complete | Planned start | Planned finish | Total float | Free float | Constraint | LEVEL 1 | LEVEL 2 | LEVEL 3 | SUMMARY | Contracts | Cost Centre |
| --- | --- | --- | --- | --- | --- | --- | --- | --- | --- | --- | --- | --- | --- | --- | --- | --- | --- | --- | --- |
|  | CA | **Cost Centre A - Preliminaries** |  |  | 2010-05-11 | 2015-05-31 |  |  |  |  |  |  |  |  |  |  |  |  |  |
|  | 10 | **IPS Milestones** |  |  | 2010-08-15 | 2015-05-31 |  |  |  |  |  |  |  |  |  |  |  |  |  |
|  | 10 | **General** |  |  | 2010-08-15 | 2015-05-31 |  |  |  |  |  |  |  |  |  |  |  |  |  |
| 8200MSA01 |  | Approval of Contractor's Submissions | milestone | 0d | 2010-08-15 A | 2010-08-15 A |  | 100% | 2011-01-08 | 2011-01-08 |  |  | finish on or after 2010-08-15 | CC A | MILESTO | o | A | 820 | A |
| 8200MSA02 |  | Submit Contamination Assessment Report & RAP | milestone | 0d | 2010-09-26 A | 2010-09-26 A | 8200DSA240 | 100% | 2011-04-13 | 2011-04-13 |  |  | finish on or after 2010-09-26 | CC A | MILESTO | o | A | 820 | A |
| 8200MSA03 |  | Complete Engineer's Office+Satisfy Implem. Plans | milestone | 0d | 2010-11-28 A | 2010-11-28 A | 8200SA0080, 8200GSA060, 8200GSA260, 8200GSA070, 8200C0A110 | 100% | 2011-04-17 | 2011-04-17 |  |  | finish on or after 2010-11-28 | CC A | MILESTO | o | A | 820 | A |
| 8200MSA04 |  | Implem. Specified Plan&Programming Management System | milestone | 0d | 2011-05-29 A | 2011-05-29 A | 8200KD1020 | 100% | 2011-05-31 | 2011-05-31 |  |  | finish on or after 2011-05-29 | CC A | MILESTO | o | A | 820 | A |
| 8200MSA05 |  | Approval of Interface Specification&Specify Plan | milestone | 0d | 2011-09-25 A | 2011-09-25 A | 8200KD1020 | 100% | 2012-01-15 | 2012-01-15 |  |  | finish on or after 2011-09-25 | CC A | MILESTO | o | A | 820 | A |
| 8200MSA06 |  | 1st TBM - Complete Assembly, T&C & Start D/T Drive | milestone | 0d | 2012-02-04 A | 2012-02-04 A | 8200TBC739 FS+1d | 100% | 2012-01-20 | 2012-01-20 |  |  | finish on or after 2012-01-15 | CC A | MILESTO | o | A | 820 | A |
| 8200MSA07 |  | Implem. Specified Plan&Programming Managem't System | milestone | 0d | 2012-05-27 A | 2012-05-27 A | 8200KD1020 | 100% |  |  |  |  | finish on or after 2012-05-27 | CC A | MILESTO | o | A | 820 | A |
| 8200MSA08 |  | Confirmation of Satisfactory Implementation of Specified Plan | milestone | 0d | 2012-11-25 A | 2012-11-25 A | 8200KD1020 | 100% | 2012-11-30 | 2012-11-30 |  |  | finish on or after 2012-11-25 | CC A | MILESTO | o | A | 820 | A |
| 8200MSA09 |  | TBM - Complete Assembly, T&C & Start U/T Drive | milestone | 0d | 2013-03-29 A | 2013-03-29 A | 8200TBC620 FS+1d | 100% |  |  |  |  | finish on or after 2013-02-10 | CC A | MILESTO | o | A | 820 | A |
| 8200MSA10 |  | Confirmation of Satisfy Implement Specified Plan & Programming Mgmt. System | milestone | 0d | 2013-05-26 A | 2013-05-26 A | 8200KD1020 | 100% |  |  |  |  | finish on or after 2013-05-26 | CC A | MILESTO | o | A | 820 | A |
| 8200MSA11 |  | Confirmation of Satisfy Implement Specified Plan | milestone | 0d | 2013-11-24 A | 2013-11-24 A | 8200KD1020 | 100% |  |  |  |  | finish on or after 2013-11-24 | CC A | MILESTO | o | A | 820 | A |
| 8200MSA13 |  | Approval of Draft O&M Manuals & As-built Drawing | milestone | 0d | 2015-03-25 A | 2015-03-25 A | 8200CCG939a, 8200CCH340, 8200CCF864, 8200CCF909b, 8200CCE810, 8200CCF310, 8200CCE830, 8200CCG799a, 8200CCD110, 8200CCG515, 8200CCF602, 8200IFC200 | 100% |  |  |  |  | mandatory finish 2015-04-30 | CC A | MILESTO | o | A | 820 | A |
| 8200MSA12 |  | Deg.1 Complete Entire Length Tunnel - Both Tracks | milestone | 0d | 2015-03-31 A | 2015-03-31 A | 8200TBC988, 8200KD1020 FS+1500d, 8200TBC986 | 100% |  |  |  |  | finish on 2015-04-10 | CC A | MILESTO | o | A | 820 | A |
| 8200MSA14 |  | Approval of O&M Manuals & As-built Drawings | milestone | 0d | 2015-05-31 | 2015-05-31 | 8200CCF866, 8200CCD120, 8200CCG520, 8200CCF315, 8200CCG799b, 8200IFC210, 8200CCG830, 8200CCG939b, 8200CCF788, 8200CCF604, 8200CCE820, 8200CCH345, 8200CCF909c, 8200CCE840 |  | 2015-06-26 | 2015-06-26 | -20d | 0d | finish on 2015-06-26 | CC A | MILESTO | o | A | 820 | A |
|  | 20 | **Submission** |  |  | 2010-05-17 | 2011-01-11 |  |  |  |  |  |  |  |  |  |  |  |  |  |
|  | 10 | **General** |  |  | 2010-05-17 | 2011-01-11 |  |  |  |  |  |  |  |  |  |  |  |  |  |
| 8200GSA010 |  | Submission of Three Month Rolling Programme | milestone | 0d | 2010-05-17 A | 2010-05-17 A | 8200KD1010 FS+14d | 100% | 2011-01-08 | 2011-01-08 |  |  | finish on or after 2010-05-17 | CC A | SUBMN | o |  | 820 | A |
| 8200GSA020 |  | Submission of Preliminary Design Programme | milestone | 0d | 2010-05-17 A | 2010-05-17 A | 8200KD1010 FS+14d | 100% | 2011-01-08 | 2011-01-08 |  |  | finish on or after 2010-05-17 | CC A | SUBMN | o |  | 820 | A |
| 8200GSA040 |  | Submission of Schedule of Design | milestone | 0d | 2010-05-17 A | 2010-05-17 A | 8200KD1010 FS+14d | 100% | 2011-01-08 | 2011-01-08 |  |  | finish on or after 2010-05-17 | CC A | SUBMN | o |  | 820 | A |
| 8200MSA290 |  | Review Tree Removal Application & Confirmation to Engineer | milestone | 0d | 2010-05-25 A | 2010-05-25 A | 8200KD1020 FS+13d | 100% |  |  |  |  | finish on or after 2010-05-25 | CC A | SUBMN | o |  | 820 | A |
| 8200GSA030 |  | Submission of Contractor Submission Schedule | milestone | 0d | 2010-05-31 A | 2010-05-31 A | 8200KD1010 FS+28d | 100% | 2011-01-08 | 2011-01-08 |  |  | finish on or after 2010-05-31 | CC A | SUBMN | o |  | 820 | A |
| 8200GSA060 |  | Submission Environment Management Plan | milestone | 0d | 2010-05-31 A | 2010-05-31 A | 8200KD1010 FS+28d | 100% | 2011-01-08 | 2011-01-08 |  |  | finish on or after 2010-05-31 | CC A | SUBMN | o |  | 820 | A |
| 8200GSA070 |  | Submission of Quality Plan | milestone | 0d | 2010-05-31 A | 2010-05-31 A | 8200KD1010 FS+28d | 100% | 2011-01-08 | 2011-01-08 |  |  | finish on or after 2010-05-31 | CC A | SUBMN | o |  | 820 | A |
| 8200GSA080 |  | Submission of Sub-contract Management Plan | milestone | 0d | 2010-06-02 A | 2010-06-02 A | 8200KD1010 FS+30d | 100% | 2011-01-08 | 2011-01-08 |  |  | finish on or after 2010-06-02 | CC A | SUBMN | o |  | 820 | A |
| 8200GSA120 |  | Apply a Billing Account in EPD for Disposal of Construction Waste | milestone | 0d | 2010-06-02 A | 2010-06-02 A | 8200KD1020 FS+21d | 100% | 2011-01-08 | 2011-01-08 |  |  | finish on or after 2010-06-02 | CC A | SUBMN | o |  | 820 | A |
| 8200GSA140 |  | Submission of Bond in form of App.B | milestone | 0d | 2010-06-02 A | 2010-06-02 A | 8200KD1010 FS+30d | 100% | 2011-01-08 | 2011-01-08 |  |  | finish on or after 2010-06-02 | CC A | SUBMN | o |  | 820 | A |
| 8200GSA150 |  | Submission of Guarantee in Form of App.C | milestone | 0d | 2010-06-02 A | 2010-06-02 A | 8200KD1010 FS+30d | 100% | 2011-01-08 | 2011-01-08 |  |  | finish on or after 2010-06-02 | CC A | SUBMN | o |  | 820 | A |
| 8200GSA160 |  | Submission of Guarantee in Form of App.D | milestone | 0d | 2010-06-02 A | 2010-06-02 A | 8200KD1010 FS+30d | 100% | 2011-01-08 | 2011-01-08 |  |  | finish on or after 2010-06-02 | CC A | SUBMN | o |  | 820 | A |
| 8200MSA360 |  | Condition Survey Submission for EBS | milestone | 0d | 2010-06-10 A | 2010-06-10 A | 8200KD1020 FS+29d | 100% | 2011-02-28 | 2011-02-28 |  |  | finish on or after 2010-06-10 | CC A | SUBMN | o |  | 820 | A |
| 8200GSA090 |  | Submission of Supply Survey Equipment Listed in App. A1 | milestone | 0d | 2010-06-11 A | 2010-06-11 A | 8200KD1010 FS+31d | 100% | 2011-01-08 | 2011-01-08 |  |  | finish on or after 2010-06-11 | CC A | SUBMN | o |  | 820 | A |
| 8200MSA400 |  | Emergency Action Plan/Crisis Management Plan | milestone | 0d | 2010-06-18 A | 2010-06-18 A |  | 100% | 2011-02-28 | 2011-02-28 |  |  | finish on or after 2010-06-18 | CC A | SUBMN | o |  | 820 | A |
| 8200MSA440 |  | Method Statement for Hoarding Erection | milestone | 0d | 2010-06-18 A | 2010-06-18 A |  | 100% | 2011-02-28 | 2011-02-28 |  |  | finish on or after 2010-06-18 | CC A | SUBMN | o |  | 820 | A |
| 8200GSA130 |  | Submission of Monitoring Emergency Response Plan(impact on Ecological & Fishers Resources) | milestone | 0d | 2010-06-26 A | 2010-06-26 A | 8200KD1020 FS+45d | 100% | 2011-01-08 | 2011-01-08 |  |  | finish on or after 2010-06-26 | CC A | SUBMN | o |  | 820 | A |
| 8200GSA170 |  | Submission of Preliminary Master Programme | milestone | 0d | 2010-07-02 A | 2010-07-02 A | 8200KD1010 FS+60d | 100% | 2010-06-02 | 2010-06-02 |  |  | finish on or after 2010-07-02 | CC A | SUBMN | o |  | 820 | A |
| 8200GSA180 |  | Submission of Time Chainage Programme | milestone | 0d | 2010-07-02 A | 2010-07-02 A | 8200KD1010 | 100% | 2010-06-02 | 2010-06-02 |  |  | finish on or after 2010-07-02 | CC A | SUBMN | o |  | 820 | A |
| 8200GSA200 |  | Submission of Survey Control Network | milestone | 0d | 2010-07-02 A | 2010-07-02 A | 8200KD1010 FS+61d | 100% | 2010-06-02 | 2010-06-02 |  |  | finish on or after 2010-07-02 | CC A | SUBMN | o |  | 820 | A |
| 8200GSA250 |  | Submission DIA to DSD for Approval | milestone | 0d | 2010-07-02 A | 2010-07-02 A |  | 100% | 2010-06-02 | 2010-06-02 |  |  | finish on or after 2010-07-02 | CC A | SUBMN | o |  | 820 | A |
| 8200GSA230 |  | Submission of Proposal for Repositioning of Traffic Signals & Control | milestone | 0d | 2010-07-07 A | 2010-07-07 A | 8200KD1010 FS+56d | 100% |  |  |  |  | finish on or after 2010-07-07 | CC A | SUBMN | o |  | 820 | A |
| 8200MSA310 |  | MS/TTm proposal & Risk Register for Conveyor System at Barging Point | milestone | 0d | 2010-07-10 A | 2010-07-10 A | 8200KD1020 FS+59d | 100% | 2011-01-08 | 2011-01-08 |  |  | finish on or after 2010-07-10 | CC A | SUBMN | o |  | 820 | A |
| 8200MSA370 |  | All Instrumentation Installation | milestone | 0d | 2010-07-10 A | 2010-07-10 A | 8200KD1020 FS+60d | 100% | 2011-02-28 | 2011-02-28 |  |  | finish on or after 2010-07-10 | CC A | SUBMN | o |  | 820 | A |
| 8200GSA190 |  | Confirmation for Conveyor System from Nam CheongShaft to Nam Cheong Barging Pt. | milestone | 0d | 2010-07-11 A | 2010-07-11 A | 8200KD1020 FS+60d | 100% | 2010-06-02 | 2010-06-02 |  |  | finish on or after 2010-07-11 | CC A | SUBMN | o |  | 820 | A |
| 8200GSA210 |  | Submission for Approval Survey Control | milestone | 0d | 2010-07-11 A | 2010-07-11 A | 8200KD1010 FS+61d | 100% |  |  |  |  | finish on or after 2010-07-11 | CC A | SUBMN | o |  | 820 | A |
| 8200GSA260 |  | Submission of Health & Safety Plan | milestone | 0d | 2010-07-11 A | 2010-07-11 A | 8200KD1020 FS+60d | 100% | 2010-06-02 | 2010-06-02 |  |  | finish on or after 2010-07-11 | CC A | SUBMN | o |  | 820 | A |
| 8200MSA320 |  | Submit Survey Method Statement for Tunnelling Works | milestone | 0d | 2010-07-12 A | 2010-07-12 A | 8200KD1020 FS+61d | 100% | 2011-01-08 | 2011-01-08 |  |  | finish on or after 2010-07-12 | CC A | SUBMN | o |  | 820 | A |
| 8200MSA340 |  | TTM Schemes Submission for Engineer Review & SLG Approval | milestone | 0d | 2010-07-12 A | 2010-07-12 A | 8200KD1020 FS+61d | 100% | 2011-01-08 | 2011-01-08 |  |  | finish on or after 2010-07-12 | CC A | SUBMN | o |  | 820 | A |
| 8200MSA390 |  | Site Supervision Plan | milestone | 0d | 2010-07-13 A | 2010-07-13 A |  | 100% | 2011-02-28 | 2011-02-28 |  |  | finish on or after 2010-07-13 | CC A | SUBMN | o |  | 820 | A |
| 8200MSA410 |  | Soil Disposal Management Plan | milestone | 0d | 2010-07-22 A | 2010-07-22 A |  | 100% | 2011-02-28 | 2011-02-28 |  |  | finish on or after 2010-07-22 | CC A | SUBMN | o |  | 820 | A |
| 8200MSA430 |  | Method Statement for Geotechnical Instrumentation Installation | milestone | 0d | 2010-07-22 A | 2010-07-22 A |  | 100% | 2011-02-28 | 2011-02-28 |  |  | finish on or after 2010-07-22 | CC A | SUBMN | o |  | 820 | A |
| 8200GSA240 |  | Submission of Schedule of Utility Services Arrangement | milestone | 0d | 2010-07-26 A | 2010-07-26 A | 8200KD1010 FS+84d | 100% | 2010-06-02 | 2010-06-02 |  |  | finish on or after 2010-07-26 | CC A | SUBMN | o |  | 820 | A |
| 8200MSA300 |  | Submit Full Details of TBMs to Engineer | milestone | 0d | 2010-08-12 A | 2010-08-12 A | 8200KD1020 FS+92d | 100% | 2012-01-15 | 2012-01-15 |  |  | finish on or after 2010-08-12 | CC A | SUBMN | o |  | 820 | A |
| 8200MSA350 |  | RemediationActionPlan forAreas11.29A to11.29-EPD | milestone | 0d | 2010-09-06 A | 2010-09-06 A | 8200KD1020 FS+92d | 100% | 2011-01-08 | 2011-01-08 |  |  | finish on or after 2010-08-12 | CC A | SUBMN | o |  | 820 | A |
| 8200MSA450 |  | Emergency Response Plan to Groundwater Drawdown & Noise/Vibration | milestone | 0d | 2010-09-16 A | 2010-09-16 A |  | 100% | 2011-02-28 | 2011-02-28 |  |  | finish on or after 2010-09-16 | CC A | SUBMN | o |  | 820 | A |
| 8200MSA380 |  | Tree Protection Plan | milestone | 0d | 2010-10-02 A | 2010-10-02 A |  | 100% | 2011-02-28 | 2011-02-28 |  |  | finish on or after 2010-10-02 | CC A | SUBMN | o |  | 820 | A |
| 8200MSA270 |  | Completion of Initial Site Survey Submission | milestone | 0d | 2010-11-03 A | 2010-11-03 A | 8200KD1020 FS+184d | 100% | 2010-06-02 | 2010-06-02 |  |  | finish on or after 2010-11-12 | CC A | SUBMN | o |  | 820 | A |
| 8200MSA280 |  | Submit Initial Site Survey Report to Engineer | milestone | 0d | 2010-11-03 A | 2010-11-03 A | 8200MSA270 FS+14d | 100% | 2010-06-02 | 2010-06-02 |  |  | finish on or after 2010-11-26 | CC A | SUBMN | o |  | 820 | A |
| 8200MSA330 |  | Submit Managem't & Operat'n Plan of Barging Facility | milestone | 0d | 2010-11-16 A | 2010-11-16 A | 8200KD1020 FS+92d | 100% | 2011-01-08 | 2011-01-08 |  |  | finish on or after 2010-08-12 | CC A | SUBMN | o |  | 820 | A |
| 8200MSA420 |  | Segmental Lining Design Submission | milestone | 0d | 2011-01-11 A | 2011-01-11 A |  | 100% | 2011-02-28 | 2011-02-28 |  |  | finish on or after 2010-10-07 | CC A | SUBMN | o |  | 820 | A |

| ID | WBS | Activity | Type | Duration | Start | Finish | Predecessors | Complete | Planned start | Planned finish | Calendar | Resources | LEVEL 1 | LEVEL 2 | LEVEL 3 | SUMMARY | Contracts | Cost Centre | 820_As-built |
| --- | --- | --- | --- | --- | --- | --- | --- | --- | --- | --- | --- | --- | --- | --- | --- | --- | --- | --- | --- |
|  | 30 | **Site Office** |  |  | 2010-08-25 | 2010-10-30 |  |  |  |  |  |  |  |  |  |  |  |  |  |
|  | 10 | **Construction** |  |  | 2010-08-25 | 2010-10-30 |  |  |  |  |  |  |  |  |  |  |  |  |  |
| 8200C0A110 |  | Site Office Establish at Works Area 11.22 |  | 66d | 2010-08-25 A | 2010-10-30 A | 8200KD1020 FS+98d, 8200AC1160 | 100% | 2011-01-08 | 2011-03-14 |  | Other Skill Labour (BS / E&M) [9600 h]; Mobile Crane [100 h]; Backhoe [100 h]; Plant Operator [1600 h] | CC A | OFF | CONS | 1 | 820 | A |  |
|  | 1 | **Training Centre** |  |  | 2010-11-08 | 2010-12-15 |  |  |  |  |  |  |  |  |  |  |  |  |  |
|  | 1 | **Construction** |  |  | 2010-11-10 | 2010-12-11 |  |  |  |  |  |  |  |  |  |  |  |  |  |
| 8200C0A330 |  | Base Slab Construction |  | 4d | 2010-11-10 A | 2010-11-13 A | 8200C0A440 FS-10d | 100% | 2011-06-23 | 2011-06-27 | Cal 1 |  | CC A | TC | CONS |  |  | A |  |
| 8200C0A340 |  | Erection of Building Structure |  | 18d | 2010-11-15 A | 2010-12-04 A | 8200C0A330 | 100% | 2011-06-21 | 2011-07-13 | Cal 1 |  | CC A | TC | CONS |  |  | A |  |
| 8200C0A350 |  | Internal Fitting Out |  | 18d | 2010-11-22 A | 2010-12-11 A | 8200C0A340 FS-12d | 100% | 2011-06-21 | 2011-07-13 | Cal 1 |  | CC A | TC | CONS |  |  | A |  |
|  | 2 | **External Works** |  |  | 2010-11-08 | 2010-12-15 |  |  |  |  |  |  |  |  |  |  |  |  |  |
| 8200C0A440 |  | External Slab Construction |  | 12d | 2010-11-08 A | 2010-11-20 A | 8200KD1020 SS, 8200KD1020 | 100% | 2011-06-21 | 2011-07-05 | Cal 1 |  | CC A | TC | CONS |  |  | A |  |
| 8200C0A460 |  | Sewer and Manholes |  | 6d | 2010-11-08 A | 2010-11-13 A | 8200C0A440 SS | 100% | 2011-06-21 | 2011-06-27 | Cal 1 |  | CC A | TC | CONS |  |  | A |  |
| 8200C0A470 |  | Hoarding Erection |  | 10d | 2010-11-10 A | 2010-11-20 A | 8200C0A440 FS-10d | 100% | 2011-06-21 | 2011-07-02 | Cal 1 |  | CC A | TC | CONS |  |  | A |  |
| 8200C0A450 |  | External U-channel |  | 9d | 2010-11-11 A | 2010-11-20 A | 8200C0A440 FS-10d | 100% | 2011-06-21 | 2011-06-30 | Cal 1 |  | CC A | TC | CONS |  |  | A |  |
| 8200C0A480 |  | Main Gate Installation |  | 6d | 2010-11-18 A | 2010-11-24 A | 8200C0A470 | 100% | 2011-06-21 | 2011-06-27 | Cal 1 |  | CC A | TC | CONS |  |  | A |  |
| 8200C0A490 |  | Sign Board Installation |  | 6d | 2010-12-09 A | 2010-12-15 A | 8200C0A450, 8200C0A480, 8200C0A460, 8200C0A350 FS-2d | 100% | 2011-06-21 | 2011-06-27 | Cal 1 |  | CC A | TC | CONS |  |  | A |  |
|  | 40 | **Barging Point** |  |  | 2010-05-11 | 2015-02-28 |  |  |  |  |  |  |  |  |  |  |  |  |  |
|  | 10 | **General** |  |  | 2010-05-12 | 2010-12-22 |  |  |  |  |  |  |  |  |  |  |  |  |  |
| 8200DSA110 |  | Barging Point Design Preparation |  | 161d | 2010-05-12 A | 2010-11-23 A | 8200KD1020 | 100% | 2011-01-08 | 2011-07-23 | Cal 3 |  | CC A | BARGING PO | o | 1 | 820 | A | 820_AB |
| 8200DSA120 |  | Barging Point Design Comment and Approval by MTR |  | 25d | 2010-11-24 A | 2010-12-22 A | 8200DSA110 | 100% | 2011-03-05 | 2011-04-02 | Cal 1 |  | CC A | BARGING PO | o | 1 | 820 | A | 820_AB |
|  | 20 | **Contamination** |  |  | 2010-05-11 | 2010-10-13 |  |  |  |  |  |  |  |  |  |  |  |  |  |
| 8200DSA220 |  | Approval Time of CAP from EPD |  | 29d | 2010-05-11 A | 2010-06-14 A | 8200DSA210 | 100% | 2011-01-18 | 2011-02-19 | Cal 3 |  | CC A | BARGING PO | CONT |  | 820 | A | 820_AB |
| 8200DSA225 |  | Preparation & Submission of M.S for Drilling |  | 8d | 2010-06-15 A | 2010-06-24 A | 8200DSA220 | 100% | 2011-02-21 | 2011-03-01 | Cal 3 |  | CC A | BARGING PO | CONT |  |  | A | 820_AB |
| 8200DSA230 |  | Site Investigation & Sample Locations Survey |  | 7d | 2010-06-25 A | 2010-07-03 A | 8200DSA220, 8200DSA225 | 100% | 2011-02-28 | 2011-03-07 | Cal 3 | Other Skill Labour (Civil) [288 h] | CC A | BARGING PO | CONT |  | 820 | A | 820_AB |
| 8200DSA235 |  | Drilling & Sampling |  | 17d | 2010-07-05 A | 2010-07-26 A | 8200DSA230 | 100% | 2011-03-07 | 2011-03-25 | Cal 1 | Other Skill Labour (Civil) [480 h] | CC A | BARGING PO | CONT |  |  | A | 820_AB |
| 8200DSA238 |  | Sampling Analysis |  | 22d | 2010-07-15 A | 2010-08-09 A | 8200DSA235 | 100% | 2011-03-18 | 2011-04-13 | Cal 3 |  | CC A | BARGING PO | CONT |  |  | A | 820_AB |
| 8200DSA240 |  | Submission of CAR |  | 24d | 2010-08-10 A | 2010-09-06 A | 8200DSA230, 8200DSA235, 8200DSA238 | 100% | 2011-04-01 | 2011-05-04 | Cal 3 |  | CC A | BARGING PO | CONT |  | 820 | A | 820_AB |
| 8200DSA250 |  | Submission of RAP |  | 24d | 2010-08-10 A | 2010-09-06 A | 8200DSA238 | 100% | 2011-04-01 | 2011-05-04 | Cal 3 |  | CC A | BARGING PO | CONT |  | 820 | A | 820_AB |
| 8200DSA210 |  | Submission of Revised CAP (by MTR) |  | 11d | 2010-09-01 A | 2010-09-13 A | 8200KD1010 | 100% | 2011-01-08 | 2011-01-20 | Cal 3 |  | CC A | BARGING PO | CONT |  | 820 | A | 820_AB |
| 8200DSA260 |  | Comments from EPD |  | 24d | 2010-09-14 A | 2010-10-13 A | 8200DSA250 | 100% | 2011-04-19 | 2011-05-21 | Cal 3 |  | CC A | BARGING PO | CONT |  | 820 | A | 820_AB |
| 8200DSA280 |  | Approved CAR & RAP Report Handover to 811B & 821 | milestone | 0d | 2010-10-13 A | 2010-10-13 A | 8200DSA260 | 100% | 2011-05-11 | 2011-05-11 | Cal 3 |  | CC A | BARGING PO | CONT |  |  | A | 820_AB |

| ID | WBS | Activity | Type | Duration | Start | Finish | Predecessors | Complete | Planned start | Planned finish | Constraint | Calendar | Resources | LEVEL 1 | LEVEL 2 | LEVEL 3 | SUMMARY | Contracts | Cost Centre | Works Area | Phases of Works | 820_As-built | Location of Works | Responsible (bm makes Global) | Responsible by |
| --- | --- | --- | --- | --- | --- | --- | --- | --- | --- | --- | --- | --- | --- | --- | --- | --- | --- | --- | --- | --- | --- | --- | --- | --- | --- |
|  | 30 | **Construction** |  |  | 2010-05-15 | 2011-06-09 |  |  |  |  |  |  |  |  |  |  |  |  |  |  |  |  |  |  |  |
| 8200C0A210 |  | Works Area 11.29A | milestone | 0d | 2010-05-15 A | 2010-05-15 A | 8200AC1300 | 100% | 2011-01-08 | 2011-01-08 |  |  |  | CC A | BARGING PO | CONS | A | 820 | A | 11.29A | C080 | 820_AB |  |  |  |
| 8200C0A220 |  | Works Area 11.29D | milestone | 0d | 2010-05-15 A | 2010-05-15 A | 8200AC1310 | 100% | 2011-01-08 | 2011-01-08 |  |  |  | CC A | BARGING PO | CONS | A | 820 | A | 11.29D | C080 | 820_AB |  |  |  |
| 8200C0A230 |  | Works Area 11.29E | milestone | 0d | 2010-05-15 A | 2010-05-15 A | 8200AC1340 | 100% | 2011-01-08 | 2011-01-08 |  |  |  | CC A | BARGING PO | CONS | A | 820 | A | 11.29E | C080 | 820_AB |  |  |  |
| 8200C0A240 |  | Works Area 11.29F | milestone | 0d | 2010-05-15 A | 2010-05-15 A | 8200AC1350 | 100% | 2011-01-08 | 2011-01-08 |  |  |  | CC A | BARGING PO | CONS | A | 820 | A | 11.29F | C080 | 820_AB |  |  |  |
| 8200C0A250 |  | Site Mobilization |  | 18d | 2010-05-26 A | 2010-06-17 A | 8200C0A240, 8200C0A230, 8200C0A210, 8200C0A220, 8200KD1020 | 100% | 2011-01-08 | 2011-01-28 |  | Cal 1 |  | CC A | BARGING PO | CONS | 1 | 820 | A |  | C020 | 820_AB | 3110 |  |  |
| 8200C0A260 |  | Hydographic/Condition Survey |  | 45d | 2010-06-19 A | 2010-08-14 A | 8200C0A230, 8200C0A210, 8200C0A220, 8200C0A250, 8200C0A240 | 100% | 2011-01-29 | 2011-03-26 |  | Cal 1 | Other Skill Labour (Civil) [384 h] | CC A | BARGING PO | CONS | 1 | 820 | A |  | C020 | 820_AB | 3110 |  |  |
| 8200C0A270 |  | Site Clearance |  | 23d | 2010-09-30 A | 2010-10-28 A | 8200C0A260, 8200DSA260 FS+24d | 100% | 2011-06-11 | 2011-07-11 |  | Cal 1 |  | CC A | BARGING PO | CONS | 1 | 820 | A |  | C020 | 820_AB | 3110 |  |  |
| 8200C0A290 |  | Site Formation fro Barging Point |  | 15d | 2010-10-11 A | 2010-10-28 A | 8200C0A270 FS-4d, 8200DSA120 | 100% | 2011-06-22 | 2011-07-11 |  | Cal 1 | Other Skill Labour (Civil) [864 h]; Backhoe [36 h]; Plant Operator [288 h] | CC A | BARGING PO | CONS |  |  | A |  |  | 820_AB |  | DJa |  |
| 8200C0A320 |  | Construction of Loading Ramps and Associated Facilities |  | 115d | 2011-01-10 A | 2011-06-09 A |  | 100% | 2011-02-28 | 2011-07-29 |  | Cal 1 | Other Skill Labour (Civil) [576 h] | CC A | BARGING PO | CONS |  |  | A |  |  | 820_AB |  | DJa |  |
|  | 40 | **Storage Treatment Plant** |  |  | 2011-10-17 | 2012-01-31 |  |  |  |  |  |  |  |  |  |  |  |  |  |  |  |  |  |  |  |
| 8200C0A310 |  | Storage Treatment Plant Setup |  | 104d | 2011-10-17 A | 2012-01-31 A | 8200PMB200, 8200PMB190 | 100% | 2012-05-21 | 2012-09-01 |  |  | Mobile Crane [104 h]; Plant Operator [832 h]; Other Skill Labour (Civil) [4992 h] | CC A | BARGING PO | TREATPT | 1 | 820 | A |  | C020 | 820_AB | 3110 |  | DJa |
|  | 1 | **Slurry Treatment Plant** |  |  | 2011-06-20 | 2015-02-28 |  |  |  |  |  |  |  |  |  |  |  |  |  |  |  |  |  |  |  |
| 8200C0A360 |  | Begininning of Material Delivery for Slurry Treatment Plants | milestone | 0d | 2011-06-20 A | 2011-06-20 A | 8200KD1020 FS+385d | 100% | 2011-06-30 | 2011-06-30 |  | Cal 1 |  | CC A | BARGING PO | STP |  |  | A |  |  | 820_AB |  |  | DJa |
| 8200C0A370 |  | Treatment Tanks Erection |  | 57d | 2011-06-20 A | 2011-09-01 A | 8200C0A360 | 100% | 2011-06-30 | 2011-09-10 |  | Cal 1 |  | CC A | BARGING PO | STP |  |  | A |  |  | 820_AB |  |  | DJa |
| 8200C0A400 |  | Slurry Treatment Plant (STP1) Construction |  | 33d | 2011-08-02 A | 2011-09-13 A | 8200C0A370 FS-25d | 100% | 2011-08-31 | 2011-10-13 |  | Cal 1 | Other Skill Labour (Civil) [3168 h] | CC A | BARGING PO | STP |  |  | A |  |  | 820_AB |  |  | DJa |
| 8200C0A380 |  | Silos Erection |  | 8d | 2011-09-02 A | 2011-09-13 A | 8200C0A370 | 100% | 2012-01-16 | 2012-01-27 |  | Cal 1 | Other Skill Labour (Civil) [768 h] | CC A | BARGING PO | STP |  |  | A |  |  | 820_AB |  |  | DJa |
| 8200C0A390 |  | Filter Press |  | 36d | 2011-09-02 A | 2011-10-20 A | 8200C0A370 | 100% | 2012-01-16 | 2012-02-29 |  | Cal 1 | Other Skill Labour (Civil) [1728 h] | CC A | BARGING PO | STP |  |  | A |  |  | 820_AB |  |  | DJa |
| 8200C0A410 |  | STP2 Construciton |  | 19d | 2011-09-14 A | 2011-10-08 A | 8200C0A400 | 100% | 2012-01-16 | 2012-02-09 |  | Cal 1 | Other Skill Labour (Civil) [1824 h] | CC A | BARGING PO | STP |  |  | A |  |  | 820_AB |  |  | DJa |
| 8200C0A420 |  | Water Commissioning of STP1 |  | 5d | 2011-11-01 A | 2011-11-05 A | 8200C0A400 FS+38d | 100% | 2012-01-16 | 2012-01-20 |  | Cal 1 |  | CC A | BARGING PO | STP |  |  | A |  |  | 820_AB |  |  | DJa |
| 8200C0A430 |  | Water Commissioning of STP2 |  | 5d | 2012-01-04 A | 2012-01-09 A | 8200C0A410 FS+71d | 100% | 2012-01-16 | 2012-01-20 |  | Cal 1 |  | CC A | BARGING PO | STP |  |  | A |  |  | 820_AB |  |  | DJa |
| 8200C0A500 |  | Dismantle Slurry Treatment Plant and Equipments (after South U/T TBM (S630-1) Backup removal) |  | 80d | 2014-10-15 A | 2014-12-30 A | 8200TBC975 | 100% | 2014-10-15 | 2015-01-19 |  | Cal 1 |  | CC A | BARGING PO |  |  |  | A |  |  | 820_AB |  |  |  |
| 8200C0A510 |  | Re-instatement |  | 48d | 2015-01-02 A | 2015-02-28 A | 8200C0A500 | 100% | 2015-01-02 | 2015-03-02 |  | Cal 1 |  | CC A | BARGING PO |  |  |  | A |  |  | 820_AB |  |  |  |
|  | CB | **Cost Centre B - Specialised Construction Machinery & Site Assembly (TBMs)** |  |  | 2010-05-12 | 2014-11-19 |  |  |  |  |  |  |  |  |  |  |  |  |  |  |  |  |  |  |  |
|  | 10 | **IPS Milestones** |  |  | 2010-07-25 | 2014-11-19 |  |  |  |  |  |  |  |  |  |  |  |  |  |  |  |  |  |  |  |
|  | 10 | **General** |  |  | 2010-07-25 | 2014-11-19 |  |  |  |  |  |  |  |  |  |  |  |  |  |  |  |  |  |  |  |
| 8200MSB01 |  | Confirmation of Order of TBM | milestone | 0d | 2010-07-25 A | 2010-07-25 A | 8200PMB120 | 100% | 2011-01-31 | 2011-01-31 | finish on or after 2010-07-25 |  |  | CC B | MILESTO | o | A | 820 | B |  |  |  |  |  |  |
| 8200MSB02 |  | TBM - Commencement of the 1st TBM Final Assembly at Factory | milestone | 0d | 2011-01-30 A | 2011-01-30 A | 8200PMB160 SF, 8200PMB150c | 100% | 2011-08-30 | 2011-08-30 | finish on or after 2011-01-30 |  |  | CC B | MILESTO | o | A | 820 | B |  |  |  |  |  |  |
| 8200MSB03 |  | TBM - Complete Fabrication & Ready Ship to HK | milestone | 0d | 2011-10-31 A | 2011-10-31 A | 8200PMB180 | 100% | 2012-01-15 | 2012-01-15 | finish on or after 2011-07-31 |  |  | CC B | MILESTO | o | A | 820 | B |  |  |  |  |  |  |
| 8200MSB04 |  | TBM - Complete Assembly,T&C+Start D/T Drive | milestone | 0d | 2012-02-04 A | 2012-02-04 A | 8200TBC739 FS+1d | 100% | 2012-02-05 | 2012-02-05 | finish on or after 2012-02-05 |  |  | CC B | MILESTO | o | A | 820 | B |  |  |  |  |  |  |
| 8200MSB05 |  | TBM - Complete Assembly,T&C+Start U/T Drive (North) | milestone | 0d | 2013-03-29 A | 2013-03-29 A | 8200TBC620 | 100% |  |  | finish on or after 2013-03-28 |  |  | CC B | MILESTO | o | A | 820 | B |  |  |  |  |  |  |
| 8200MSB06 |  | TBM - Complete Assembly,T&C+Start Remain U/T Drive (South) | milestone | 0d | 2013-12-12 A | 2013-12-12 A | 8200TBC860 SF, 8200TBC840 | 100% |  |  | mandatory finish 2013-12-01 |  |  | CC B | MILESTO | o | A | 820 | B |  |  |  |  |  |  |
| 8200MSB07 |  | TBM - Complete Dismantle of TBM | milestone | 0d | 2014-11-19 A | 2014-11-19 A | 8200TBC680, 8200TBC970, 8200TBC975, 8200TBC575, 8200TBC825 | 100% |  |  | finish on or before 2014-09-28 |  |  | CC B | MILESTO | o | A | 820 | B |  |  |  |  |  |  |

| ID | WBS | Activity | Type | Duration | Start | Finish | Predecessors | Complete | Planned start | Planned finish | Constraint | Sum1 | Order | Cost Centre | 820_As-built | Responsible by | LEVEL 1 | LEVEL 2 | LEVEL 3 | SUMMARY | Responsible (bm makes Global) | Contracts | Phases of Works |
| --- | --- | --- | --- | --- | --- | --- | --- | --- | --- | --- | --- | --- | --- | --- | --- | --- | --- | --- | --- | --- | --- | --- | --- |
|  | 20 | **Procurement** |  |  | 2010-05-12 | 2012-01-04 |  |  |  |  |  |  |  |  |  |  |  |  |  |  |  |  |  |
| 8200y0010 |  | TBM (S630-1) Procurement & Delivery | level of effort | 619d | 2010-05-12 A | 2011-12-12 A | 8200PMB110 SS | 100% | 2011-02-28 | 2012-11-07 |  | S1 | 2 | B | 820_AB |  |  |  |  |  |  |  |  |
| 8200y0020 |  | TBM (S631-1) Procurement & Delivery | level of effort | 680d | 2010-05-12 A | 2011-11-04 A | 8200PMB210 SS | 100% | 2011-02-28 | 2013-01-07 |  | S1 | 1 | B | 820_AB |  |  |  |  |  |  |  |  |
|  | 10 | **TBM (S630-1) Procurement** |  |  | 2010-05-12 | 2012-01-04 |  |  |  |  |  |  |  |  |  |  |  |  |  |  |  |  |  |
| 8200PMB110 |  | TBM(S630-1) - Procurement |  | 50d | 2010-05-12 A | 2010-06-30 A | 8200KD1020 | 100% | 2011-01-08 | 2011-02-26 |  |  |  | B | 820_AB | DJa | CC B | PROCURE | 1TBM PR | 1 | DJa | 820 | C030 |
| 8200PMB140 |  | TBM(S630-1) - Detailed Design |  | 77d | 2010-07-01 A | 2010-09-15 A | 8200PMB120 | 100% | 2011-01-31 | 2011-04-17 |  |  |  | B | 820_AB | DJa | CC B | PROCURE | 1TBM PR | 1 | DJa | 820 | C030 |
| 8200PMB150a |  | Purchase Parts |  | 200d | 2010-07-01 A | 2011-01-16 A | 8200PMB120 | 100% | 2011-01-31 | 2011-08-18 |  |  |  | B | 820_AB | DJa | CC B | PROCURE | 1TBM PR |  | DJa |  |  |
| 8200PMB120 |  | TBM(S630-1) - Ordering | milestone | 0d | 2010-07-08 A | 2010-07-08 A | 8200PMB110 | 100% | 2011-02-26 | 2011-02-26 |  |  |  | B | 820_AB | DJa | CC B | PROCURE | 1TBM PR | 1 | DJa | 820 | C030 |
| 8200PMB140a |  | Ergonomy Study |  | 65d | 2010-07-11 A | 2010-09-14 A | 8200PMB140 SS+10d | 100% | 2011-02-10 | 2011-04-15 |  |  |  | B | 820_AB | DJa | CC B | PROCURE | 1TBM PR |  | DJa |  |  |
| 8200PMB150b |  | Manufacturing of Drive Unit (in Europe) |  | 177d | 2010-08-18 A | 2011-02-10 A | 8200PMB140a FS-28d, 8200PMB150a SS+30d | 100% | 2011-03-20 | 2011-09-12 |  |  |  | B | 820_AB | DJa | CC B | PROCURE | 1TBM PR |  | DJa |  |  |
| 8200PMB150f |  | Manufacturing of Shield, Cutterhead, Back-up (in China) |  | 191d | 2010-09-16 A | 2011-03-25 A | 8200PMB150e FF+6d, 8200PMB140 | 100% | 2011-02-28 | 2011-09-06 |  |  |  | B | 820_AB | DJa | CC B | PROCURE | 1TBM PR |  | DJa |  |  |
| 8200PMB150d |  | Pre-assembly Drive Unit, Erector, Hydraulics, Slurry Pumps in Schwanau |  | 82d | 2010-12-01 A | 2011-02-20 A | 8200PMB150c, 8200PMB150a FF+12d, 8200PMB150b | 100% | 2011-08-03 | 2011-10-23 |  |  |  | B | 820_AB | DJa | CC B | PROCURE | 1TBM PR |  | DJa |  |  |
| 8200PMB150c |  | Commencement of TBM1 Final Assembly at Factory | milestone | 0d | 2011-01-30 A | 2011-01-30 A | 8200PMB150b | 100% | 2011-08-03 | 2011-08-03 |  |  |  | B | 820_AB | DJa | CC B | PROCURE | 1TBM PR | A | DJa | 820 |  |
| 8200PMB150e |  | Transport (Europe to China) |  | 37d | 2011-02-10 A | 2011-03-18 A | 8200PMB150d | 100% | 2011-03-28 | 2011-05-03 |  |  |  | B | 820_AB | DJa | CC B | PROCURE | 1TBM PR |  | DJa |  |  |
| 8200PMB152 |  | Design Review for TBM (S631-1) Modification |  | 25d | 2011-03-29 A | 2011-04-22 A | 8200PMB155 | 100% | 2011-06-19 | 2011-07-13 |  |  |  | B | 820_AB | DJa | CC B | PROCURE | 1TBM PR |  | DJa |  |  |
| 8200PMB155 |  | EI issue for TBM (S630-1) Modification | milestone | 0d | 2011-04-11 A | 2011-04-11 A |  | 100% | 2011-06-30 | 2011-06-30 | start on 2011-03-28 |  |  | B | 820_AB | DJa | CC B | PROCURE | 1TBM PR | A | DJa | 820 |  |
| 8200PMB155a |  | TBM (S630-1) Modification |  | 71d | 2011-04-12 A | 2011-06-21 A | 8200PMB155 FS-12d, 8200PMB152 FS-6d | 100% | 2011-06-30 | 2011-09-08 |  |  |  | B | 820_AB | DJa | CC B | PROCURE | 1TBM PR |  | DJa |  |  |
| 8200PMB160 |  | Final Assembly in Workshop |  | 154d | 2011-04-30 A | 2011-10-01 A | 8200PMB150f FS-14d, 8200PMB155a FF+102d | 100% | 2011-06-19 | 2011-11-19 |  |  |  | B | 820_AB | DJa | CC B | PROCURE | 1TBM PR |  | DJa |  |  |
| 8200PMB170 |  | Factory Acceptance Tests |  | 24d | 2011-09-08 A | 2011-10-02 A | 8200PMB160 FF | 100% | 2012-01-15 | 2012-02-07 |  |  |  | B | 820_AB | DJa | CC B | PROCURE | 1TBM PR |  | DJa |  |  |
| 8200PMB180 |  | Disassembly & Ready Ship to HK |  | 28d | 2011-10-03 A | 2011-10-31 A | 8200PMB170 | 100% | 2012-01-15 | 2012-02-11 |  |  |  | B | 820_AB | DJa | CC B | PROCURE | 1TBM PR |  | DJa |  |  |
| 8200PMB185 |  | TBM (S630-1) Available for delivery to HK | milestone | 0d | 2011-10-31 A | 2011-10-31 A | 8200PMB180 | 100% | 2012-01-15 | 2012-01-15 |  |  |  | B | 820_AB | DJa | CC B | PROCURE | 1TBM PR |  |  |  |  |
| 8200PMB190 |  | TBM(S630-1) - TBM Storage |  | 46d | 2011-11-01 A | 2011-12-17 A | 8200PMB185, 8200PMB180 | 100% | 2012-01-15 | 2012-02-29 |  |  |  | B | 820_AB | DJa | CC B | PROCURE | 1TBM PR | 1 | DJa | 820 | C030 |
| 8200PMB200 |  | TBM(S630-1) - Transport & Delivery to HK |  | 21d | 2011-12-15 A | 2012-01-04 A | 8200PMB180, 8200PMB190, 8200PMB185, 8200y0010 FF | 100% | 2012-03-01 | 2012-03-21 |  |  |  | B | 820_AB | DJa | CC B | PROCURE | 1TBM PR | 1 | DJa | 820 | C030 |
|  | 20 | **TBM (S631-1) Procurement** |  |  | 2010-05-12 | 2011-11-04 |  |  |  |  |  |  |  |  |  |  |  |  |  |  |  |  |  |
| 8200PMB210 |  | TBM(S631-1) - Procurement |  | 49d | 2010-05-12 A | 2010-06-30 A | 8200KD1020 | 100% | 2011-01-31 | 2011-03-20 |  |  |  | B | 820_AB | DJa | CC B | PROCURE | 2TBM PR | 1 | DJa | 820 | C030 |
| 8200PMB240 |  | TBM(S631-1) - Detailed Design |  | 88d | 2010-07-01 A | 2010-09-26 A | 8200PMB220 | 100% | 2011-02-27 | 2011-05-25 |  |  |  | B | 820_AB | DJa | CC B | PROCURE | 2TBM PR | 1 | DJa | 820 | C030 |
| 8200PMB250a |  | Purchase Parts |  | 251d | 2010-07-01 A | 2011-03-08 A | 8200PMB220 | 100% | 2011-01-08 | 2011-09-15 |  |  |  | B | 820_AB | DJa | CC B | PROCURE | 2TBM PR |  | DJa |  |  |
| 8200PMB220 |  | TBM(S631-1) - Ordering | milestone | 0d | 2010-07-08 A | 2010-07-08 A | 8200PMB210 | 100% | 2011-02-26 | 2011-02-26 |  |  |  | B | 820_AB | DJa | CC B | PROCURE | 2TBM PR | 1 | DJa | 820 | C030 |
| 8200PMB240a |  | Ergonomy Study |  | 66d | 2010-07-13 A | 2010-09-16 A | 8200PMB240 SS+12d | 100% | 2011-01-20 | 2011-03-26 |  |  |  | B | 820_AB | DJa | CC B | PROCURE | 2TBM PR |  | DJa |  |  |
| 8200PMB250b |  | Manufacturing of Drive Unit (in Europe) |  | 186d | 2010-09-17 A | 2011-03-21 A | 8200PMB240a, 8200PMB250a FF+6d | 100% | 2011-03-27 | 2011-09-28 |  |  |  | B | 820_AB | DJa | CC B | PROCURE | 2TBM PR |  | DJa |  |  |
| 8200PMB250e |  | Manufacturing on Shield, Cutterhead,Back-up (in China) |  | 210d | 2010-11-06 A | 2011-06-03 A | 8200PMB240, 8200PMB250d FF+72d | 100% | 2011-03-11 | 2011-10-06 |  |  |  | B | 820_AB | DJa | CC B | PROCURE | 2TBM PR |  | DJa |  |  |
| 8200PMB250d |  | Transport (Europe to China) |  | 70d | 2011-02-28 A | 2011-05-08 A | 8200PMB250c | 100% | 2011-04-19 | 2011-06-27 |  |  |  | B | 820_AB | DJa | CC B | PROCURE | 2TBM PR |  | DJa |  |  |
| 8200PMB250c |  | Pre-assembly Drive Unit,erector,Hydraulics, Slurry Pumps in Schwanau |  | 28d | 2011-03-22 A | 2011-04-18 A | 8200PMB250b | 100% | 2011-06-19 | 2011-07-16 |  |  |  | B | 820_AB | DJa | CC B | PROCURE | 2TBM PR |  | DJa |  |  |
| 8200PMB250f |  | Design Review for TBM (S631-1) Modification |  | 25d | 2011-03-29 A | 2011-04-22 A |  | 100% | 2011-06-19 | 2011-07-13 |  |  |  | B | 820_AB | DJa | CC B | PROCURE | 1TBM PR |  | DJa |  |  |
| 8200PMB250g |  | EI issue for TBM631.1 Modification | milestone | 0d | 2011-04-11 A | 2011-04-11 A |  | 100% | 2011-06-30 | 2011-06-30 | start on 2011-03-28 |  |  | B | 820_AB | DJa | CC B | PROCURE | 1TBM PR | A | DJa | 820 |  |
| 8200PMB260 |  | Final Assembly in Workshop |  | 125d | 2011-05-16 A | 2011-09-17 A | 8200PMB250e FS-18d, 8200PMB250h FF+35d | 100% | 2011-06-19 | 2011-10-21 |  |  |  | B | 820_AB | DJa | CC B | PROCURE | 2TBM PR |  | DJa |  |  |
| 8200PMB250h |  | TBM (S631-1) Modification |  | 71d | 2011-06-04 A | 2011-08-13 A | 8200PMB250e, 8200PMB250g, 8200PMB250f FS-6d | 100% | 2011-06-19 | 2011-08-28 |  |  |  | B | 820_AB | DJa | CC B | PROCURE | 1TBM PR |  | DJa |  |  |
| 8200PMB270 |  | Factory Acceptance Tests |  | 24d | 2011-08-25 A | 2011-09-17 A | 8200PMB260 FF | 100% | 2011-08-31 | 2011-09-23 |  |  |  | B | 820_AB | DJa | CC B | PROCURE | 2TBM PR |  | DJa |  |  |
| 8200PMB280 |  | Disassembly |  | 28d | 2011-09-18 A | 2011-10-15 A | 8200PMB270 | 100% | 2012-01-15 | 2012-02-11 |  |  |  | B | 820_AB | DJa | CC B | PROCURE | 2TBM PR |  | DJa |  |  |
| 8200PMB285 |  | TBM (S631-1) Available for delivery to HK | milestone | 0d | 2011-10-15 A | 2011-10-15 A | 8200PMB280 | 100% | 2012-01-15 | 2012-01-15 |  |  |  | B | 820_AB | DJa | CC B | PROCURE | 2TBM PR |  |  |  |  |
| 8200PMB850 |  | TBM(S631-1) - Transport & Delivery to HK |  | 20d | 2011-10-16 A | 2011-11-04 A | 8200y0020 FF, 8200PMB280, 8200PMB240, 8200PMB285 | 100% | 2012-01-15 | 2012-02-03 |  |  |  | B | 820_AB | DJa | CC B | PROCURE | 2TBM PR | 1 | DJa | 820 | C030 |

| ID | WBS | Activity | Type | Duration | Start | Finish | Predecessors | Complete | Planned start | Planned finish | Constraint | Calendar | LEVEL 1 | LEVEL 2 | LEVEL 3 | SUMMARY | Contracts | Cost Centre | 820_As-built | Responsible by | Responsible (bm makes Global) | Phases of Works |
| --- | --- | --- | --- | --- | --- | --- | --- | --- | --- | --- | --- | --- | --- | --- | --- | --- | --- | --- | --- | --- | --- | --- |
|  | CC | **Cost Centre C - Mei Lai Road - Hoi Ting Road Tunnel** |  |  | 2010-05-12 | 2015-05-31 |  |  |  |  |  |  |  |  |  |  |  |  |  |  |  |  |
|  | 10 | **IPS Milestones** |  |  | 2010-10-31 | 2015-05-10 |  |  |  |  |  |  |  |  |  |  |  |  |  |  |  |  |
|  | 10 | **General** |  |  | 2010-10-31 | 2015-05-10 |  |  |  |  |  |  |  |  |  |  |  |  |  |  |  |  |
| 8200MSC01 |  | Approval of Tunnel Lining Design | milestone | 0d | 2010-10-31 A | 2010-10-31 A | 8200DSC170, 8200DSC365 | 100% | 2011-07-18 | 2011-07-18 | finish on or after 2010-10-31 |  | CC C | MILESTO | o | A | 820 | C |  |  |  |  |
| 8200MSC02 |  | Approval of Tunnel Segment Mould Design | milestone | 0d | 2011-01-30 A | 2011-01-30 A | 8200DSC365 | 100% | 2011-02-28 | 2011-02-28 | finish on or after 2011-01-30 |  | CC C | MILESTO | o | A | 820 | C |  |  |  |  |
| 8200MSC03 |  | Confirmation of the Order of Segment Mould | milestone | 0d | 2011-03-27 A | 2011-03-27 A | 8200TSC100 | 100% | 2011-06-30 | 2011-06-30 | finish on or after 2011-03-27 |  | CC C | MILESTO | o | A | 820 | C |  |  |  |  |
| 8200MSC04 |  | Complete Ground Improvement Wk Outside Hoi Ting Shaft | milestone | 0d | 2011-06-19 A | 2011-06-19 A | 8200CEC120 | 100% |  |  | finish on or after 2011-06-19 |  | CC C | MILESTO | o | A | 820 | C |  |  |  |  |
| 8200MSC05 |  | Complete 30% of Pre-cast Segment Manufacturing | milestone | 0d | 2012-05-13 A | 2012-05-13 A | 8200TSC135 FF, 8200TSC130 | 100% | 2012-12-20 | 2012-12-20 | finish on or after 2012-05-13 |  | CC C | MILESTO | o | A | 820 | C |  |  |  |  |
| 8200MSC07 |  | Complete 30% of Tunnel Drive | milestone | 0d | 2012-08-26 A | 2012-08-26 A | 8200TBC787 FS-10d, 8200TBC490 FS-7d | 100% | 2012-08-31 | 2012-08-31 | finish on or after 2012-06-24 |  | CC C | MILESTO | o | A | 820 | C |  |  |  |  |
| 8200MSC06 |  | Complete 45% of Pre-cast Segment Manufacturing | milestone | 0d | 2012-09-12 A | 2012-09-12 A | 8200TSC145 FF, 8200TSC140 | 100% | 2013-04-19 | 2013-04-19 | finish on or after 2012-09-02 |  | CC C | MILESTO | o | A | 820 | C |  |  |  |  |
| 8200MSC08 |  | Complete 50% of Tunnel Drive | milestone | 0d | 2013-01-31 A | 2013-01-31 A | 8200TBC565 | 100% |  |  | finish on or after 2012-10-28 |  | CC C | MILESTO | o | A | 820 | C |  |  |  |  |
| 8200MSC09 |  | Complete 60% of Tunnel Drive | milestone | 0d | 2013-07-31 A | 2013-07-31 A | 8200TBC645 | 100% |  |  | finish on or after 2013-03-24 |  | CC C | MILESTO | o | A | 820 | C |  |  |  |  |
| 8200MSC10 |  | Deg. 1 Completion for D/T Tunnel | milestone | 0d | 2014-05-18 A | 2014-05-18 A | 8200TBC580, 8200TBC834 | 100% |  |  | finish on 2014-06-15 |  | CC C | MILESTO | o | A | 820 | C |  |  |  |  |
| 8200MSC11 |  | Complete 100% of Tunnel Drive | milestone | 0d | 2014-09-28 A | 2014-09-28 A | 8200TBC819, 8200TBC960, 8200TBC565, 8200TBC679 | 100% |  |  | finish on 2014-08-17 |  | CC C | MILESTO | o | A | 820 | C |  |  |  |  |
| 8200MSC12 |  | Deg. 1 Completion for U/T Tunnel | milestone | 0d | 2015-02-28 A | 2015-02-28 A | 8200TBC986, 8200TBC710, 8200TBC720, 8200TBC988 | 100% |  |  | finish on 2015-02-22 |  | CC C | MILESTO | o | A | 820 | C |  |  |  |  |
| 8200MSC13 |  | Complete All Works | milestone | 0d | 2015-05-10 A | 2015-05-10 A | 8200TBC413f, 8200CPC800b, 8200CPC555a, 8200CPC890a, 8200CPC228, 8200TBC430g, 8200TBC615a, 8200CPC330a, 8200CPC205a, 8200CPC980c, 8200CPC720a, 8200CPC234a, 8200TBC834, 8200CPC936, 8200CPC865, 8200CPC395a, 8200CPC582, 8200CPC140c, 8200TBC858, 8200CPC470a, 8200CPC926a, 8200CPC630a, 8200TSC150, 8200CPC230, 8200TBC580, 8200TBC415a, 8200TBC425a, 8200CPC270a, 8200CPC140c FF | 100% |  |  | finish on 2015-05-10 |  | CC C | MILESTO | o | A | 820 | C |  |  |  |  |
|  | 60 | **Critical Dates** |  |  | 2011-02-02 | 2013-09-30 |  |  |  |  |  |  |  |  |  |  |  |  |  |  |  |  |
|  | 10 | **Critical Dates** |  |  | 2011-02-02 | 2013-09-30 |  |  |  |  |  |  |  |  |  |  |  |  |  |  |  |  |
| 8200CEC100 |  | Earliest Access Date- Works Area 12.2 | milestone | 0d | 2011-02-02 A | 2011-02-02 A | 8200PD6010 | 100% | 2011-02-28 | 2011-02-28 |  |  | CC C | CONSTRU | CRIT DA | A | 820 | C | 820_AB |  |  |  |
| 8200CEC120 |  | Ground Treatment Completion at Works Area 12.2 | milestone | 0d | 2011-06-18 A | 2011-06-18 A | 8200TBC160 | 100% | 2011-06-19 | 2011-06-19 | finish on or after 2011-06-19 |  | CC C | CONSTRU | CRIT DA | A | 820 | C | 820_AB |  |  |  |
| 8200CEC140 |  | Hoi Ting Road - TBM Retrieval Shaft Ready | milestone | 0d | 2013-09-30 A | 2013-09-30 A | 8200TBC565 FS-31d | 100% |  |  |  |  | CC C | CONSTRU | CRIT DA | 1 | 820 | C | 820_AB |  |  |  |
|  | 20 | **Method Statement Submission and Approval** |  |  | 2010-08-16 | 2011-08-23 |  |  |  |  |  |  |  |  |  |  |  |  |  |  |  |  |
|  | 10 | **Method Stattement Submission and Approval** |  |  | 2010-08-16 | 2011-08-23 |  |  |  |  |  |  |  |  |  |  |  |  |  |  |  |  |
| 8200MTC110 |  | MS Submission Preparation for CLP/IVESchool Grouting |  | 168d | 2010-08-16 A | 2011-03-10 A | 8200KD1020 FS+320d | 100% | 2011-06-30 | 2012-01-19 |  | Cal 3 | CC C | MS PREP | MS PREP | VB & CC | 820 | C | 820_AB | MiC | ARo | C010 |
| 8200MTC170 |  | MS Submission Preparation for Cross Passage |  | 79d | 2011-02-28 A | 2011-05-27 A | 8200KD1020 FS+168d | 100% | 2011-02-28 | 2011-06-07 |  | Cal 3 | CC C | MS PREP | MS PREP | A | 820 | C | 820_AB | MiC | ARo | C010 |
| 8200MTC120 |  | MS Submission to MTR | milestone | 0d | 2011-03-10 A | 2011-03-10 A | 8200MTC110 FF | 100% | 2011-06-30 | 2011-06-30 |  | Cal 3 | CC C | MS PREP | MS PREP | VB & CC | 820 | C | 820_AB | MiC | ARo | C010 |
| 8200MTC130 |  | MS Comment by MTR |  | 36d | 2011-03-11 A | 2011-04-15 A | 8200MTC120 | 100% | 2011-06-30 | 2011-08-04 |  |  | CC C | MS PREP | MS PREP | VB & CC | 820 | C | 820_AB | MiC | ARo | C010 |
| 8200MTC140 |  | MS Re-submission Preparation |  | 8d | 2011-04-07 A | 2011-04-15 A | 8200MTC130, 8200MTC130 FF | 100% | 2011-06-30 | 2011-07-09 |  | Cal 3 | CC C | MS PREP | MS PREP | VB & CC | 820 | C | 820_AB | MiC | ARo | C010 |
| 8200MTC230 |  | MS Submission Preparation for HoiFu Estate/Charming Bldgs.& YMT School |  | 22d | 2011-04-11 A | 2011-05-11 A | 8200KD1020 FS+300d | 100% | 2011-06-30 | 2011-07-26 |  | Cal 3 | CC C | MS PREP | MS PREP | VB & CC | 820 | C | 820_AB | MiC | ARo | C010 |
| 8200MTC150 |  | MS Comment & Approval by MTR |  | 48d | 2011-04-16 A | 2011-06-02 A | 8200MTC140, 8200MTC140 FF, 8200MTC140 SS | 100% | 2011-06-30 | 2011-08-16 |  |  | CC C | MS PREP | MS PREP | VB & CC | 820 | C | 820_AB | MiC | ARo | C010 |
| 8200MTC240 |  | MS Submission to MTR | milestone | 0d | 2011-05-11 A | 2011-05-11 A | 8200MTC230 FF | 100% | 2011-06-30 | 2011-06-30 |  | Cal 3 | CC C | MS PREP | MS PREP | VB & CC | 820 | C | 820_AB | MiC | ARo | C010 |
| 8200MTC250 |  | MS Comment & Approoval by MTR |  | 22d | 2011-05-12 A | 2011-06-03 A | 8200MTC240 | 100% | 2011-06-30 | 2011-07-21 |  |  | CC C | MS PREP | MS PREP | VB & CC | 820 | C | 820_AB | MiC | ARo | C010 |
| 8200MTC180 |  | MS Submission to MTR | milestone | 0d | 2011-05-27 A | 2011-05-27 A | 8200MTC170 FF | 100% | 2011-06-30 | 2011-06-30 |  | Cal 3 | CC C | MS PREP | MS PREP | A | 820 | C | 820_AB | MiC | ARo | C010 |
| 8200MTC190 |  | MS Comment by MTR |  | 17d | 2011-05-28 A | 2011-07-06 A | 8200MTC180 | 100% | 2011-06-30 | 2011-07-16 |  |  | CC C | MS PREP | MS PREP | A | 820 | C | 820_AB | MiC | ARo | C010 |
| 8200MTC160 |  | Issue for Construction (CLP/IVE) | milestone | 0d | 2011-06-02 A | 2011-06-02 A | 8200MTC130 FS+1d, 8200MTC150 | 100% | 2011-07-27 | 2011-07-27 |  | Cal 3 | CC C | MS PREP | MS PREP | VB & CC | 820 | C | 820_AB | MiC |  | C010 |
| 8200MTC260 |  | MS Re-submission Preparation |  | 24d | 2011-06-04 A | 2011-07-06 A | 8200MTC250 FF, 8200MTC250 | 100% | 2011-06-30 | 2011-07-28 |  | Cal 3 | CC C | MS PREP | MS PREP | VB & CC | 820 | C | 820_AB | MiC | ARo | C010 |
| 8200MTC200 |  | MS Re-Submission Preparation |  | 18d | 2011-07-07 A | 2011-07-25 A | 8200MTC190 | 100% | 2011-08-31 | 2011-09-21 |  | Cal 3 | CC C | MS PREP | MS PREP | A | 820 | C | 820_AB | MiC | ARo | C010 |
| 8200MTC270 |  | MS Approval by MTR |  | 12d | 2011-07-07 A | 2011-08-01 A | 8200MTC260, 8200MTC260 SS, 8200MTC260 FF | 100% | 2011-08-31 | 2011-09-11 |  |  | CC C | MS PREP | MS PREP | VB & CC | 820 | C | 820_AB | MiC | ARo | C010 |
| 8200MTC210 |  | MS Comment & Approval by MTR |  | 18d | 2011-07-26 A | 2011-08-23 A | 8200MTC200, 8200MTC180 | 100% | 2011-08-31 | 2011-09-17 |  |  | CC C | MS PREP | MS PREP | A | 820 | C | 820_AB | MiC | ARo | C010 |
| 8200MTC280 |  | Issue for Construction (HoiFu Estate/Charming Bldgs & YMT School) | milestone | 0d | 2011-08-01 A | 2011-08-01 A | 8200MTC270 | 100% | 2011-08-31 | 2011-08-31 |  | Cal 3 | CC C | MS PREP | MS PREP | VB & CC | 820 | C | 820_AB | MiC |  | C010 |
| 8200MTC220 |  | Issue for Construction (Cross Passage) | milestone | 0d | 2011-08-23 A | 2011-08-23 A | 8200MTC210 FS+1d | 100% | 2011-08-31 | 2011-08-31 |  | Cal 3 | CC C | MS PREP | MS PREP | A | 820 | C | 820_AB | MiC |  | C010 |

| ID | WBS | Activity | Type | Duration | Start | Finish | Predecessors | Complete | Planned start | Planned finish | Constraint | Calendar | Resources | Responsible by | LEVEL 1 | LEVEL 2 | LEVEL 3 | Contracts | Cost Centre | Phases of Works | 820_As-built | SUMMARY | QUANTITY | Priority A | Sum1 | TBM UT f | TBM UT s | Order | Responsible (bm makes Global) | Location of Works | Sub-locationof Works | Areas/ Rooms | Classification of Works | TBM DT s | TBM DT f | Classify |
| --- | --- | --- | --- | --- | --- | --- | --- | --- | --- | --- | --- | --- | --- | --- | --- | --- | --- | --- | --- | --- | --- | --- | --- | --- | --- | --- | --- | --- | --- | --- | --- | --- | --- | --- | --- | --- |
|  | 30 | **TTMS Submission and Approval** |  |  | 2010-07-05 | 2011-07-16 |  |  |  |  |  |  |  |  |  |  |  |  |  |  |  |  |  |  |  |  |  |  |  |  |  |  |  |  |  |  |
|  | 10 | **TTM Scheme Submission & Approval** |  |  | 2010-07-05 | 2011-07-16 |  |  |  |  |  |  |  |  |  |  |  |  |  |  |  |  |  |  |  |  |  |  |  |  |  |  |  |  |  |  |
| 8200TMC160 |  | XP Application & Approval |  | 60d | 2010-07-05 A | 2010-08-02 A | 8200TMC120 SS+30d, 8200TMC140 FF+6d | 100% | 2011-06-20 | 2011-08-18 |  |  |  | HCh | CC C | TTMPREP | TTMS/AP | 820 | C | C040 | 820_AB |  |  |  |  |  |  |  |  |  |  |  |  |  |  |  |
| 8200TMC110 |  | Prepare TTM for grouting works for Existing Bldg |  | 26d | 2010-11-10 A | 2010-12-09 A | 8200KD1020 FS+60d | 100% | 2011-02-01 | 2011-03-05 |  | Cal 1 |  | HCh | CC C | TTMPREP | TTMS/AP | 820 | C | C040 | 820_AB | TTMS AP |  |  |  |  |  |  |  |  |  |  |  |  |  |  |
| 8200TMC120 |  | TTM reviewed by SLG |  | 61d | 2010-12-10 A | 2011-02-08 A | 8200TMC110 | 100% | 2011-03-06 | 2011-05-05 |  |  |  | HCh | CC C | TTMPREP | TTMS/AP | 820 | C | C040 | 820_AB | TTMS AP |  |  |  |  |  |  |  |  |  |  |  |  |  |  |
| 8200TMC130 |  | Resubmit TTM |  | 1d | 2011-02-08 A | 2011-02-08 A | 8200TMC120 | 100% | 2011-05-23 | 2011-05-23 |  | Cal 1 |  | HCh | CC C | TTMPREP | TTMS/AP | 820 | C | C040 | 820_AB | TTMS AP |  |  |  |  |  |  |  |  |  |  |  |  |  |  |
| 8200TMC140 |  | TTM reviewed by SLG |  | 1d | 2011-02-08 A | 2011-02-08 A | 8200TMC130 | 100% | 2011-05-29 | 2011-05-29 |  |  |  | HCh | CC C | TTMPREP | TTMS/AP | 820 | C | C040 | 820_AB | TTMS AP |  |  |  |  |  |  |  |  |  |  |  |  |  |  |
| 8200TMC150 |  | Notification to RMO (for Ch140 +080 & +150 & +200) |  | 8d | 2011-02-11 A | 2011-02-18 A | 8200TMC110 SF, 8200TMC140 | 100% | 2011-06-19 | 2011-06-26 |  |  |  | HCh | CC C | TTMPREP | TTMS/AP | 820 | C | C040 | 820_AB | TTMS AP |  |  |  |  |  |  |  |  |  |  |  |  |  |  |
| 8200TMC170a |  | Implement TTM (Initial Stage) |  | 148d | 2011-02-24 A | 2011-07-15 A | 8200TMC160, 8200TMC150 | 100% | 2011-02-28 | 2011-07-25 |  |  |  | HCh | CC C | TTMPREP | TTMS/AP |  | C |  | 820_AB |  |  |  |  |  |  |  |  |  |  |  |  |  |  |  |
| 8200TMC180 |  | Notification to RMO (for Ch140 +340) |  | 12d | 2011-06-28 A | 2011-07-12 A | 8200TMC140 FS+146d | 100% | 2011-08-31 | 2011-09-11 |  |  |  | HCh | CC C | TTMPREP | TTMS/AP |  | C |  | 820_AB |  |  |  |  |  |  |  |  |  |  |  |  |  |  |  |
| 8200TMC190 |  | Implement TTM | milestone | 0d | 2011-07-16 A | 2011-07-16 A | 8200TMC180 | 100% | 2011-08-31 | 2011-08-31 |  |  |  | HCh | CC C | TTMPREP | TTMS/AP |  | C |  | 820_AB |  |  |  |  |  |  |  |  |  |  |  |  |  |  |  |
|  | 1 | **SP License Application and Approval** |  |  | 2011-07-20 | 2011-12-22 |  |  |  |  |  |  |  |  |  |  |  |  |  |  |  |  |  |  |  |  |  |  |  |  |  |  |  |  |  |  |
| 8200MSC200 |  | SP License application |  | 155d | 2011-07-20 A | 2011-12-22 A | 8200KD1020 | 100% | 2012-01-15 | 2012-06-17 |  |  |  |  | CC C | Submn-1 | o |  | C |  | 820_AB |  |  |  |  |  |  |  |  |  |  |  |  |  |  |  |
| 8200MSC210 |  | SP License application | milestone | 0d | 2011-12-22 A | 2011-12-22 A | 8200MSC200 | 100% | 2012-01-15 | 2012-01-15 |  |  |  |  | CC C | Submn-1 | o |  | C |  | 820_AB |  |  |  |  |  |  |  |  |  |  |  |  |  |  |  |
|  | 50 | **TBM (S631-1) Excavation with Deg.1 Works** |  |  | 2011-07-15 | 2014-04-18 |  |  |  |  |  |  |  |  |  |  |  |  |  |  |  |  |  |  |  |  |  |  |  |  |  |  |  |  |  |  |
| 8200y0190 |  | Grouting Wk@N/B Ch137+570: Building Foundation (Hoi Lai Shopping Centre) (NUT) | level of effort | 161d | 2011-07-15 A | 2012-07-31 A | 8200TBC612 SS | 100% | 2012-03-24 | 2012-08-31 |  |  | Other Skill Labour (Civil); Drilling Rig |  | CC C | TBM631 | UT | 820 | C | C090 | 820_AB | 1 | 20mL | 1 | S4 | 2013-03-20 | 2013-03-20 | 2 | INg | 2030 | TUNN | UT | EPIW |  |  |  |
| 8200y0150 |  | Piles Removal@CLP Equipment Bldg.& Footbridges KF-118 by 805 (NDT) | milestone | 0d | 2011-11-13 A | 2011-11-13 A | 8200PD7020 FF | 100% | 2012-01-15 | 2012-01-15 |  |  |  |  | CC C | TBM631 | DT | 820 | C | C090 | 820_AB | A |  |  | S2 |  |  | 1 | DJa | 2030 | TUNS | DT | EPIW | 2012-04-15 | 2012-04-15 |  |
| 8200sum068 |  | Ground Treatment for IVE School (DT) | level of effort | 149d | 2011-11-15 A | 2012-01-14 A | 8200CCF622 SS | 100% | 2012-01-16 | 2012-06-12 |  |  |  |  |  |  |  |  | C |  | 820_AB |  |  | 4 | S3 |  |  |  |  |  |  |  |  | 2012-05-16 | 2012-05-16 |  |
| 8200y0170 |  | Ground Treatment for HKIVE School (NDT) | level of effort | 71d | 2011-12-28 A | 2012-01-14 A | 8200CCF722 SS | 100% | 2012-01-16 | 2012-03-26 |  |  |  |  |  |  |  |  | C |  | 820_AB |  |  | 4 | S3 |  |  | 4 |  |  |  |  |  | 2012-04-25 | 2012-04-25 |  |
| 8200y0120 |  | TBM (S631-1) North-DT Excavation | level of effort | 285d | 2012-02-04 A | 2012-12-14 A | 8200TBC740 SS | 100% | 2012-01-20 | 2012-10-30 |  |  |  |  |  |  |  |  | C |  | 820_AB |  |  |  | S1 |  |  | 7 |  |  |  |  |  |  |  |  |
| 8200y0130 |  | TBM (S631-1) Dismantle & Re-assembly | level of effort | 72d | 2012-12-26 A | 2013-03-28 A | 8200TBC825 SS+10d | 100% | 2012-12-17 | 2013-02-26 |  |  | TBM Maintenance Crew |  | CC C | TBM631 | UT | 820 | C | C090 | 820_AB | 1 |  |  | S1 |  |  | 8 | DJa | 2030 | TUNN | UT | EPIW |  |  | C1 |
| 8200sum065 |  | Access Available for Works Area 11.10A &11.10B (IVE School) (DT) (Contractual Handover Date) | milestone | 0d | 2013-02-06 A | 2013-02-06 A |  | 100% |  |  | start on or after 2012-02-06 |  |  |  |  |  |  |  | C |  | 820_AB |  |  |  | S3 |  |  |  |  |  |  |  |  |  |  |  |
| 8200y0160 |  | Access Available for Works Area 11.10A &11.10B (IVE School) (DT) (Contractual Handover Date) | milestone | 0d | 2013-02-06 A | 2013-02-06 A | 8200CCF620 | 100% |  |  | start on 2012-02-06 |  |  |  |  |  |  |  | C |  | 820_AB |  |  |  | S3 |  |  | 3 |  |  |  |  |  |  |  |  |
| 8200sum040 |  | TBM (S631-1) North -UT Excavation | level of effort | 231d | 2013-03-29 A | 2013-11-14 A | 8200TBC625 SS | 100% |  |  |  |  |  |  |  |  |  |  |  |  | 820_AB |  |  |  | S1 |  |  |  |  |  |  |  |  |  |  |  |

| ID | WBS | Activity | Type | Duration | Start | Finish | Predecessors | Complete | Planned start | Planned finish | Calendar | Resources | Responsible by | Sum1 | Order | LEVEL 1 | LEVEL 2 | LEVEL 3 | Cost Centre | 820_As-built | Classify | TBM DT s | TBM DT f | SUMMARY | Responsible (bm makes Global) | Contracts | Location of Works | Sub-locationof Works | Areas/ Rooms | Phases of Works | Classification of Works | QUANTITY | Production Rate | Priority A |
| --- | --- | --- | --- | --- | --- | --- | --- | --- | --- | --- | --- | --- | --- | --- | --- | --- | --- | --- | --- | --- | --- | --- | --- | --- | --- | --- | --- | --- | --- | --- | --- | --- | --- | --- |
|  | 1 | **General** |  |  | 2011-11-04 | 2012-02-03 |  |  |  |  |  |  |  |  |  |  |  |  |  |  |  |  |  |  |  |  |  |  |  |  |  |  |  |  |
| 8200TBC738 |  | TBM (S631-1) Delivery on Site | milestone | 0d | 2011-11-04 A | 2011-11-04 A | 8200PMB850 | 100% | 2012-01-15 | 2012-01-15 |  |  | DJa | S2 | 5 | CC E | TBM631 | DT | C | 820_AB |  |  |  |  |  |  |  |  |  |  |  |  |  |  |
| 8200TBC739 |  | TBM (S631-1) Assembly and T&C |  | 76d | 2011-11-05 A | 2012-02-03 A | 8200CCE242c20, 8200TBC738, 8200CCE279a20 FS-13d, 8200TBC738 FF | 100% | 2012-01-15 | 2012-03-30 |  | Other Skill Labour (Civil) [3648 h]; Mobile Crane [76 h]; Plant Operator [608 h]; TBM Maintenance Crew [10944 h] | DJa | S2 | 6 | CC E | TBM631 | DT | C | 820_AB | C1 |  |  |  |  |  |  |  |  |  |  |  |  |  |
|  | 10 | **Downtrack Construction (North)** |  |  | 2011-11-13 | 2013-08-24 |  |  |  |  |  |  |  |  |  |  |  |  |  |  |  |  |  |  |  |  |  |  |  |  |  |  |  |  |
|  | 1 | **TBM Excavation (North-DT)** |  |  | 2011-11-13 | 2013-08-24 |  |  |  |  |  |  |  |  |  |  |  |  |  |  |  |  |  |  |  |  |  |  |  |  |  |  |  |  |
| 8200TBC771 |  | Piles Removal@CLP Equipment Bldg.& Footbridges KF-118 by 805 | milestone | 0d | 2011-11-13 A | 2011-11-13 A | 8200PD7020 FF | 100% | 2012-01-15 | 2012-01-15 |  |  | DJa | S2 |  | CC C | TBM631 | DT | C | 820_AB |  | 2012-05-07 | 2012-05-07 | A | DJa | 820 | 2030 | TUNS | DT | C090 | EPIW |  |  |  |
| 8200TBC740 |  | D/T TBM (S631-1) Break-in &Excavation Ch137+783-137+730 |  | 22d | 2012-02-04 A | 2012-02-25 A | 8200C0A380, 8200C0A390, 8200C0A430, 8200TBC739 | 100% | 2012-01-20 | 2012-02-10 | Cal 5 | TBM Excavation [3684 m3]; TBM Maintenance Crew [2592 h]; TBM Operational Crew [6912 h]; TBM [18 h] | DJa |  |  | CC C | TBM631 | DT | C | 820_AB | C1 |  |  | 1 | DJa | 820 | 2030 | TUNS | DT | C090 | EPIW | 54m |  |  |
| 8200TBC745 |  | Reach Cheung Sha Wan Cargo Pier Pile Obstruction | milestone | 0d | 2012-02-25 A | 2012-02-25 A | 8200TBC740 | 100% | 2012-02-10 | 2012-02-10 | Cal 4 |  | DJa |  |  | CC C | TBM631 | DT | C | 820_AB | C1 |  |  | 1 | DJa | 820 | 2030 | TUNS | DT | C090 | EPIW |  | Ch137+710 |  |
| 8200TBC750 |  | D/T Excavation Ch137+730-137+640 |  | 37d | 2012-02-26 A | 2012-03-05 A | 8200CCF660, 8200TBC740, 8200CCF657, 8200CCF664, 8200CCF894b, 8200CCF893 | 100% | 2012-02-11 | 2012-03-18 | Cal 5 | TBM Excavation [6140 m3]; TBM Maintenance Crew [4320 h]; TBM Operational Crew [11520 h]; TBM [30 h] | DJa |  |  | CC C | TBM631 | DT | C | 820_AB | C1 |  |  | 1 | DJa | 820 | 2030 | TUNS | DT | C090 | EPIW | 90m |  |  |
| 8200TBC760 |  | D/T Excavation Ch137+640-137+530 |  | 15d | 2012-03-06 A | 2012-03-23 A | 8200TBC745, 8200TBC771, 8200TBC750, 8200CPC228 SS+60d, 8200sum048, 8200CPC230 SS+60d, 8200y0150 | 100% | 2012-03-19 | 2012-04-02 | Cal 5 | TBM Excavation [7504 m3]; TBM Maintenance Crew [2592 h]; TBM Operational Crew [6912 h]; TBM [18 h] | DJa |  |  | CC C | TBM631 | DT | C | 820_AB | C1 |  |  | 1 | DJa | 820 | 2030 | TUNS | DT | C090 | EPIW | 110m |  |  |
| 8200TBC760a |  | Reach CP88 (CH137+565) | milestone | 0d | 2012-03-21 A | 2012-03-21 A | 8200CPC295f, 8200TBC760 SF+10d, 8200TBC760 FF-5d | 100% | 2012-03-29 | 2012-03-29 |  |  | DJa |  |  | CC C | TBM631 | DT | C | 820_AB | C1 |  |  |  | DJa |  |  |  |  |  |  | 668m=45571m3 |  |  |
| 8200TBC765 |  | D/T Excavation Ch137+530-137+420 |  | 10d | 2012-03-24 A | 2012-04-03 A | 8200TBC760a, 8200TBC760 | 100% | 2012-04-03 | 2012-04-12 | Cal 5 | TBM Excavation [7504 m3]; TBM Maintenance Crew [1728 h]; TBM Operational Crew [4608 h]; TBM [12 h] | DJa |  |  | CC C | TBM631 | DT | C | 820_AB | C1 |  |  | 1 | DJa | 820 | 2030 | TUNS | DT | C090 | EPIW | 110m |  |  |
| 8200TBC770 |  | D/T Excavation Ch137+420-137+345 |  | 7d | 2012-04-04 A | 2012-04-13 A | 8200TBC765 | 100% | 2012-04-13 | 2012-04-19 | Cal 5 | TBM Excavation [5117 m3]; TBM Maintenance Crew [1296 h]; TBM Operational Crew [3456 h]; TBM [9 h] | DJa |  |  | CC C | TBM631 | DT | C | 820_AB | C1 |  |  | 1 | DJa | 820 | 2030 | TUNS | DT | C090 | EPIW | 75m |  |  |
| 8200TBC770a |  | Reach CP87 (CH137+369) | milestone | 0d | 2012-04-08 A | 2012-04-08 A | 8200TBC770 FF-2d, 8200TBC770 SF+5d, 8200CPC232 | 100% | 2012-04-18 | 2012-04-18 |  |  | DJa |  |  | CC C | TBM631 | DT | C | 820_AB | C1 |  |  |  | DJa |  |  |  |  |  |  | 668m=45571m3 |  |  |
| 8200TBC772 |  | Reach Footbridge KF118 (Pile removed by 805) | milestone | 0d | 2012-04-13 A | 2012-04-13 A | 8200TBC770 | 100% | 2012-04-19 | 2012-04-19 |  |  | DJa |  |  | CC C | TBM631 | DT | C | 820_AB | C1 |  |  |  | DJa |  |  |  |  |  |  |  |  |  |
| 8200TBC774 |  | D/T Excavation Ch137+345-137+280 |  | 6d | 2012-04-14 A | 2012-04-19 A | 8200TBC772 | 100% | 2012-04-20 | 2012-04-25 | Cal 5 | TBM Excavation [4434 m3]; TBM Maintenance Crew [1152 h]; TBM Operational Crew [3072 h]; TBM [8 h] | DJa |  |  | CC C | TBM631 | DT | C | 820_AB | C1 |  |  |  | DJa |  |  |  |  |  |  | 65m |  |  |
| 8200TBC775 |  | D/T Excavation Ch137+280-137+265 |  | 2d | 2012-04-20 A | 2012-04-21 A | 8200TBC770, 8200TBC770a, 8200TBC774 | 100% | 2012-04-26 | 2012-04-27 | Cal 5 | TBM Excavation [1023 m3]; TBM Maintenance Crew [288 h]; TBM Operational Crew [768 h]; TBM [2 h] | DJa |  |  | CC C | TBM631 | DT | C | 820_AB | C1 |  |  | 1 | DJa | 820 | 2030 | TUNS | DT | C090 | EPIW | 15m |  | 2 |
| 8200TBC777 |  | Reach IVE Haking Wong Waterfont Annex (advanced work:Grouting) | milestone | 0d | 2012-04-21 A | 2012-04-21 A | 8200TBC775 | 100% | 2012-04-27 | 2012-04-27 |  |  | DJa |  |  | CC C | TBM631 | DT | C | 820_AB | C1 |  |  |  | DJa |  |  |  |  |  |  |  |  |  |
| 8200TBC778 |  | D/T Excavation Ch137+265-137+240 |  | 3d | 2012-04-22 A | 2012-04-23 A | 8200CCF732, 8200TBC777 | 100% | 2012-04-28 | 2012-04-30 | Cal 5 | TBM Excavation [1706 m3]; TBM Maintenance Crew [432 h]; TBM Operational Crew [1152 h]; TBM [3 h] | DJa |  |  | CC C | TBM631 | DT | C | 820_AB | C1 |  |  |  | DJa |  |  |  |  |  |  | 25m |  |  |
| 8200TBC780 |  | D/T Excavation Ch137+240-137+190 |  | 5d | 2012-04-24 A | 2012-04-28 A | 8200TBC778 | 100% | 2012-05-01 | 2012-05-05 | Cal 5 | TBM Excavation [3411 m3]; TBM Maintenance Crew [864 h]; TBM Operational Crew [2304 h]; TBM [6 h] | DJa |  |  | CC C | TBM631 | DT | C | 820_AB | C1 |  |  | 1 | DJa | 820 | 2030 | TUNS | DT | C090 | EPIW | 50m |  |  |
| 8200TBC785 |  | D/T Excavation Ch137+190-137+080 |  | 20d | 2012-04-29 A | 2012-05-24 A | 8200TBC780 | 100% | 2012-05-06 | 2012-05-25 | Cal 5 | TBM Excavation [7504 m3]; TBM Maintenance Crew [2736 h]; TBM Operational Crew [7296 h]; TBM [19 h] | DJa |  |  | CC C | TBM631 | DT | C | 820_AB | C1 |  |  | 1 | DJa | 820 | 2030 | TUNS | DT | C090 | EPIW | 110m |  |  |
| 8200TBC785a |  | Reach CP86 (CH137+119) | milestone | 0d | 2012-05-12 A | 2012-05-12 A | 8200TBC785 SF+13d, 8200TBC785 FF-7d, 8200CPC165 | 100% | 2012-05-19 | 2012-05-19 |  |  | DJa |  |  | CC C | TBM631 | DT | C | 820_AB | C1 |  |  |  | DJa |  |  |  |  |  |  | 668m=45571m3 |  |  |
| 8200TBC786 |  | Reach WD1 DSD Obstruction & 1800dia.Sewer | milestone | 0d | 2012-05-24 A | 2012-05-24 A | 8200TBC785a, 8200TBC785 | 100% | 2012-05-25 | 2012-05-25 |  |  | DJa |  |  | CC C | TBM631 | DT | C | 820_AB | C1 |  |  |  | DJa |  |  |  |  |  |  |  |  |  |
| 8200TBC787 |  | D/T Excavation Ch137+080-136+960 |  | 21d | 2012-05-25 A | 2012-06-06 A | 8200CCG174, 8200CCG190, 8200CCG301, 8200TBC786, 8200CCG314 | 100% | 2012-05-26 | 2012-06-15 | Cal 5 | TBM Excavation [8186 m3]; TBM Maintenance Crew [3024 h]; TBM Operational Crew [8064 h]; TBM [21 h] | DJa |  |  | CC C | TBM631 | DT | C | 820_AB | C1 |  |  |  | DJa |  |  |  |  |  |  | 120m |  |  |
| 8200TBC790 |  | Reach Lai Chi Kok DSD Obstruction | milestone | 0d | 2012-06-06 A | 2012-06-06 A | 8200TBC765, 8200CCF510, 8200TBC787, 8200TBC785 | 100% | 2012-06-15 | 2012-06-15 |  |  | DJa |  |  | CC C | TBM631 | DT | C | 820_AB | C1 |  |  | 1 | DJa | 820 | 2030 | TUNS | DT | C090 | EPIW |  | Ch136+960 |  |
| 8200TBC795 |  | D/T Excavation Ch136+960-136+945 |  | 3d | 2012-06-07 A | 2012-06-09 A | 8200TBC790, 8200CCF468 | 100% | 2012-06-16 | 2012-06-18 | Cal 5 | TBM Excavation [1023 m3]; TBM Maintenance Crew [432 h]; TBM Operational Crew [1152 h]; TBM [3 h] | DJa |  |  | CC C | TBM631 | DT | C | 820_AB | C1 |  |  | 1 | DJa | 820 | 2030 | TUNS | DT | C090 | EPIW | 15m |  |  |
| 8200TBC800 |  | D/T Excavation Ch136+945-136+920 |  | 6d | 2012-06-10 A | 2012-06-15 A | 8200TBC795 | 100% | 2012-06-19 | 2012-06-24 | Cal 5 | TBM Maintenance Crew [720 h]; TBM Operational Crew [1920 h]; TBM [5 h]; TBM Excavation [1706 m3] | DJa |  |  | CC C | TBM631 | DT | C | 820_AB | C1 |  |  | 1 | DJa | 820 | 2030 | TUNS | DT | C090 | EPIW | 25m |  |  |
| 8200TBC805 |  | Reach TWL Sump Pit Ch136+920 | milestone | 0d | 2012-06-15 A | 2012-06-15 A | 8200TBC795, 8200TBC800 | 100% | 2012-06-24 | 2012-06-24 |  |  | DJa |  |  | CC C | TBM631 | DT | C | 820_AB |  |  |  | 1 | DJa | 820 | 2030 | TUNS | DT | C090 | EPIW |  | Ch136+910 |  |
| 8200TBC810 |  | D/T Excavation Ch136+920-136+820 |  | 9d | 2012-06-16 A | 2012-06-25 A | 8200TBC805, 8200TBC800, 8200CCF305 | 100% | 2012-06-25 | 2012-07-03 | Cal 7 | TBM Excavation [6822 m3]; TBM Maintenance Crew [1296 h]; TBM Operational Crew [3456 h]; TBM [9 h] | DJa |  |  | CC C | TBM631 | DT | C | 820_AB | C1 |  |  | 1 | DJa | 820 | 2030 | TUNS | DT | C090 | EPIW | 100m |  |  |
| 8200TBC810a |  | Reach CP85 (CH136+860) | milestone | 0d | 2012-06-28 A | 2012-06-28 A | 8200TBC810 FF-4d, 8200TBC810 SF+5d | 100% | 2012-06-30 | 2012-06-30 |  |  | DJa |  |  | CC C | TBM631 | DT | C | 820_AB | C1 |  |  |  | DJa |  |  |  |  |  |  | 668m=45571m3 |  |  |
| 8200TBC815 |  | D/T Excavation Ch136+820-136+640 |  | 21d | 2012-07-06 A | 2012-07-26 A | 8200TBC810a, 8200TBC810 | 100% | 2012-07-04 | 2012-07-24 | Cal 7 | TBM Excavation [12280 m3]; TBM Maintenance Crew [2592 h]; TBM Operational Crew [6912 h]; TBM [18 h] | DJa |  |  | CC C | TBM631 | DT | C | 820_AB | C1 |  |  | 1 | DJa | 820 | 2030 | TUNS | DT | C090 | EPIW | 180m |  |  |
| 8200TBC818a |  | D/T Excavation Ch136+640-136+583 - XRL821 |  | 6d | 2012-07-27 A | 2012-08-09 A | 8200TBC815 | 100% | 2012-07-25 | 2012-07-30 | Cal 7 | TBM [6 h]; TBM Excavation [3888.54 m3]; TBM Operational Crew [2304 h]; TBM Maintenance Crew [864 h] | DJa |  |  | CC C | TBM631 | DT | C | 820_AB | C1 |  |  |  | DJa |  |  |  |  |  |  | 668m=45571m3 |  |  |
| 8200TBC818a1 |  | Reach CP84(CH136+601) - XRL821 | milestone | 0d | 2012-07-30 A | 2012-07-30 A | 8200TBC818a SF+4d, 8200TBC818a FF-2d | 100% | 2012-07-29 | 2012-07-29 |  |  | DJa |  |  | CC C | TBM631 | DT | C | 820_AB | C1 |  |  |  | DJa |  |  |  |  |  |  | 668m=45571m3 |  |  |
| 8200TBC818b |  | D/T Excavation Ch136+583-136+351 - XRL821 |  | 29d | 2012-07-30 A | 2012-09-14 A | 8200TBC818a1, 8200TBC818a | 100% | 2012-07-31 | 2012-08-28 | Cal 7 | TBM Excavation [15827 m3]; TBM [25 h]; TBM Operational Crew [11136 h]; TBM Maintenance Crew [4176 h] | DJa |  |  | CC C | TBM631 | DT | C | 820_AB | C1 |  |  |  | DJa |  |  |  |  |  |  | 668m=45571m3 |  |  |
| 8200TBC818b1 |  | Reach CP83 (CH136+351) XRL- 821 | milestone | 0d | 2012-09-14 A | 2012-09-14 A | 8200TBC818b | 100% | 2012-09-17 | 2012-09-17 |  |  | DJa |  |  | CC C | TBM631 | DT | C | 820_AB | C1 |  |  |  | DJa |  |  |  |  |  |  | 668m=45571m3 |  |  |
| 8200TBC818c |  | D/T Excavation Ch136+351-136+101 - XRL821 |  | 25d | 2012-09-15 A | 2012-10-07 A | 8200TBC818b1, 8200TBC818b | 100% | 2012-09-18 | 2012-10-12 | Cal 7 | TBM Excavation [17055 m3]; TBM Maintenance Crew [3600 h]; TBM Operational Crew [9600 h]; TBM [25 h] | DJa |  |  | CC C | TBM631 | DT | C | 820_AB | C1 |  |  |  | DJa |  |  |  |  |  |  | 668m=45571m3 |  |  |
| 8200TBC818c10 |  | D/T Excavation Ch136+101-135+972 - XRL821 |  | 11d | 2012-10-07 A | 2012-10-17 A | 8200TBC818c1, 8200TBC818c | 100% | 2012-10-08 | 2012-10-18 | Cal 7 | TBM Excavation [8800.38 m3]; TBM [11 h]; TBM Maintenance Crew [1584 h]; TBM Operational Crew [4224 h] | DJa |  |  | CC C | TBM631 | DT | C | 820_AB | C1 |  |  |  | DJa |  |  |  |  |  |  | 668m=45571m3 |  |  |
| 8200TBC818c1 |  | Reach CP82 (CH136+101) - XRL821 | milestone | 0d | 2012-10-07 A | 2012-10-07 A | 8200TBC818c | 100% |  |  |  |  | DJa |  |  | CC C | TBM631 | DT | C | 820_AB | C1 |  |  |  | DJa |  |  |  |  |  |  | 668m=45571m3 |  |  |
| 8200TBC819 |  | D/T Excavation Ch135+972-135+772 - XRL821 |  | 18d | 2012-10-17 A | 2012-12-08 A | 8200TBC818c10 | 100% | 2012-10-19 | 2012-11-05 | Cal 7 | TBM Excavation [13644 m3]; TBM Operational Crew [6912 h]; TBM Maintenance Crew [2592 h]; TBM [18 h] | DJa |  |  | CC C | TBM631 | DT | C | 820_AB | C1 |  |  |  | DJa |  |  |  |  |  |  | 668m=45571m3 |  |  |
| 8200TBC819a |  | Reach CP81 (CH135+851) - XRL821 | milestone | 0d | 2012-11-24 A | 2012-11-24 A | 8200TBC819 FF-7d, 8200TBC819 SF+11d | 100% | 2012-11-05 | 2012-11-05 |  |  |  |  |  | CC C | TBM631 | DT | C | 820_AB | C1 |  |  |  | DJa |  |  |  |  |  |  | 668m=45571m3 |  |  |
| 8200TBC819b |  | D/T Excavation Ch135+772-135+737 - XRL 821 (235m) Break-in |  | 4d | 2012-12-08 A | 2012-12-14 A | 8200TBC819 | 100% | 2012-12-08 | 2012-12-11 | Cal 7 | TBM Excavation [2387.7 m3]; TBM Operational Crew [1209.6 h]; TBM Maintenance Crew [576 h]; TBM [4 h] | DJa |  |  | CC C | TBM631 | DT | C | 820_AB | C1 |  |  |  | DJa |  |  |  |  |  |  | 668m=45571m3 |  |  |
| 8200TBC819d |  | D/T exit inside TBM Cavern (XRL821) |  | 5d | 2012-12-15 A | 2012-12-19 A | 8200TBC819, 8200y0120 FF, 8200TBC819b | 100% |  |  | Cal 7 | TBM Excavation; TBM Maintenance Crew [720 h]; TBM Operational Crew [1920 h] | DJa |  |  | CC C | TBM631 | DT | C | 820_AB | C1 |  |  |  | DJa |  |  |  |  |  |  |  |  |  |
| 8200TBC825 |  | TBM (S631-1) Shield Dismantle & Removal |  | 45d | 2012-12-17 A | 2013-01-30 A | 8200TBC810, 8200TBC815, 8200TBC819d | 100% |  |  |  | TBM Maintenance Crew [6480 h] | DJa |  |  | CC C | TBM631 | DT | C | 820_AB | C1 |  |  | 1 | DJa | 820 | 2030 | TUNS | DT | C090 | EPIW |  |  |  |
| 8200TBC820 |  | TBM (S631-1) Backup pull back |  | 10d | 2013-01-07 A | 2013-01-23 A | 8200TBC825 SS+28d, 8200TBC819d | 100% | 2013-01-07 | 2013-01-16 |  | TBM Maintenance Crew [4032 h] | DJa |  |  | CC C | TBM631 | DT | C | 820_AB |  |  |  | 1 | DJa | 820 | 2030 | TUNS | DT | C090 | EPIW |  |  |  |
| 8200TBC827 |  | Set up Equipment for Invert Construction (Ch135+737-XRL821 to Ch137+784) |  | 12d | 2013-01-31 A | 2013-02-08 A | 8200TBC820, 8200TBC825 | 100% | 2013-01-31 | 2013-02-16 | Cal 3 | Other Skill Labour (Civil) [576 h] | DJa |  |  | CC C | TBM631 | DT | C | 820_AB |  |  |  | 1 | JMB | 820 | 2030 | TUNS | DT | C090 | EPIW |  |  |  |
| 8200TBC830 |  | Tunnel Invert & Walkway (North DT- Ch135+737-XRL821 to Ch137+784) |  | 140d | 2013-02-14 A | 2013-08-02 A | 8200TBC827 | 100% | 2013-02-14 | 2013-08-05 | Cal 3 | Carpenter [2208 h]; Concretor [1104 h]; Other Skill Labour (Civil) [1104 h]; Steel Fixer [2208 h] | DJa |  |  | CC C | TBM631 | DT | C | 820_AB |  |  |  |  | JMB |  |  |  |  |  |  | 868m |  |  |
| 8200TBC834 |  | Deg. 1 Works (incl. XRL821) |  | 65d | 2013-06-01 A | 2013-08-24 A | 8200TBC830 FF+16d | 100% | 2013-06-01 | 2013-08-17 | Cal 3 | Other Skill Labour (Civil) [2080 h] | DJa |  |  | CC C | TBM631 | DT | C | 820_AB |  |  |  | 1 | JMB | 820 | 2010 | TUNN | UT |  |  |  |  |  |

Notes:
- 8200TBC750: Problems Encountered: link to 8200CCF683b FS (CSW 20E); / link to 8200895d FS (CSW 23G)
- 8200TBC760: Problems Encountered: link to 8200CPC165 SS64 (CP86)
- 8200TBC775: Anticipated Problems: ignore Sham Mong Rd. Substation Ground treatment (8200CCF625) & / CLP & Spare - Equipment Building Ground treatment / (8200TBC735)
- 8200TBC778: Problems Encountered: if according to contract IVE access on 6 Feb 12, / completion date for grouting should be 9 May 12.
- 8200TBC787: Problems Encountered: link to 8200CCG195 FS (WD1-1.1m dia); / link to 8200CCG305 FS (WD1-1.8m dia)
- 8200TBC795: Problems Encountered: link to 8200CCF430 FS (LCK underpinning Grid / 3)
- 8200TBC800: Anticipated Problems: ignore: TWL Sump (CCF8200CCF295)
- 8200TBC810: Anticipated Problems: ignore: TWL Sump (CCF8200CCF295); / CCF880 FS (TWL - Cast base slab)
- 8200TBC819: Basis & Assumptions: production rate according to Version A
- 8200TBC819b: Basis & Assumptions: production rate according to Version A
- 8200TBC825: Basis & Assumptions: 4 weeks for slurry pipe removal; 1-0d for back up / removal through the tunnel; 7d for shield/ cutter head transportation through / the tunnel

| ID | WBS | Activity | Type | Duration | Start | Finish | Predecessors | Complete | Planned start | Planned finish | Calendar | Resources | QUANTITY | Responsible by | Priority A | LEVEL 1 | LEVEL 2 | LEVEL 3 | SUMMARY | Contracts | Cost Centre | Location of Works | Sub-locationof Works | Areas/ Rooms | Phases of Works | Classification of Works | 820_As-built | Sum1 | TBM UT f | TBM UT s | Responsible (bm makes Global) | Classify | Production Rate |
| --- | --- | --- | --- | --- | --- | --- | --- | --- | --- | --- | --- | --- | --- | --- | --- | --- | --- | --- | --- | --- | --- | --- | --- | --- | --- | --- | --- | --- | --- | --- | --- | --- | --- |
|  | 2 | **Uptrack Construction (North)** |  |  | 2012-01-30 | 2014-04-18 |  |  |  |  |  |  |  |  |  |  |  |  |  |  |  |  |  |  |  |  |  |  |  |  |  |  |  |
|  | 1 | **Ground Treatment (North-UT)** |  |  | 2012-01-30 | 2012-09-29 |  |  |  |  |  |  |  |  |  |  |  |  |  |  |  |  |  |  |  |  |  |  |  |  |  |  |  |
| 8200TBC612 |  | TTMS & Site Set up for Building Foundation Grouting Works |  | 24d | 2012-01-30 A | 2012-03-31 A | 8200AC1140 FS+631d | 100% | 2012-03-24 | 2012-04-30 | Cal 1 | Drilling Rig [75 h]; Other Skill Labour (Civil) [3600 h] | 32mL | CIp | 1 | CC C | TBM630 | UT | 1 | 820 | C | 2010 | TUNS | DT | C090 | EPIW | 820_AB |  |  |  |  |  |  |
| 8200TBC613 |  | Install Sleeve Pipe (Hoi Lai Shopping Centre) (UT) |  | 24d | 2012-02-29 A | 2012-03-28 A | 8200TBC612, 8200TBC610, 8200AC1140 | 100% | 2012-05-02 | 2012-05-31 | Cal 1 | Other Skill Labour (Civil) [3600 h]; Drilling Rig [75 h] | 20mL | CIp | 1 | CC C | TBM631 | UT | 1 | 820 | C | 2030 | TUNN | UT | C090 | EPIW | 820_AB | S4 | 2013-05-05 | 2013-05-05 | INg |  |  |
| 8200TBC615 |  | Grouting Wk@N/B Ch137+570: Building Foundation (Hoi Lai Shopping Centre) (UT) |  | 71d | 2012-05-28 A | 2012-08-13 A | 8200TBC613, 8200TBC610, 8200y0190 FF, 8200TBC612, 8200AC1140 | 100% | 2012-06-01 | 2012-08-31 | Cal 1 | Other Skill Labour (Civil) [3600 h]; Drilling Rig [75 h] | 20mL | CIp | 1 | CC C | TBM631 | UT | 1 | 820 | C | 2030 | TUNN | UT | C090 | EPIW | 820_AB | S4 | 2013-05-05 | 2013-05-05 | INg |  |  |
| 8200TBC615a |  | Reinstatement@N/B Ch137+570:(Hoi Lai Shopping Centre) (UT) |  | 24d | 2012-09-03 A | 2012-09-29 A | 8200TBC613, 8200TBC615 | 100% | 2012-09-01 | 2012-10-03 | Cal 1 | Other Skill Labour (Civil) [1152 h] | 20mL | CIp | 1 | CC C | TBM631 | UT | 1 | 820 | C | 2030 | TUNN | UT | C090 | EPIW | 820_AB | S4 | 2013-05-05 | 2013-05-05 | INg |  |  |
|  | 2 | **TBM Excavation (North-UT)** |  |  | 2013-01-08 | 2014-04-18 |  |  |  |  |  |  |  |  |  |  |  |  |  |  |  |  |  |  |  |  |  |  |  |  |  |  |  |
| 8200TBC620 |  | TBM (S631-1) Re-assembly |  | 72d | 2013-01-08 A | 2013-03-28 A | 8200y0130 FF, 8200TBC825 FS-17d | 100% | 2013-01-08 | 2013-03-20 |  | TBM Maintenance Crew [11400 h] |  | DJa |  | CC C | TBM631 | UT | 1 | 820 | C | 2030 | TUNN | UT | C090 | EPIW | 820_AB | S1 |  |  | DJa | C1 |  |
| 8200TBC625 |  | U/T Excavation Ch137+810-137+710 (Break-in) |  | 23d | 2013-03-29 A | 2013-04-07 A | 8200TBC620 | 100% | 2013-03-29 | 2013-04-20 | Cal 5 | TBM Excavation [6822 m3]; TBM Maintenance Crew [3312 h]; TBM [184 h]; TBM Operational Crew [8832 h] | 100m | DJa |  | CC C | TBM631 | UT | 1 | 820 | C | 2030 | TUNN | UT | C090 | EPIW | 820_AB |  |  |  | DJa | C1 |  |
| 8200TBC635 |  | U/T Excavation Ch137+710-137+580 |  | 25d | 2013-04-07 A | 2013-04-19 A | 8200CCF698, 8200CCF694, 8200CCF682a, 8200CCF690, 8200TBC630, 8200CCF686 | 100% | 2013-04-07 | 2013-05-01 | Cal 5 | TBM Excavation [8869 m3]; TBM Maintenance Crew [3600 h]; TBM [200 h]; TBM Operational Crew [9600 h] | 130m | DJa |  | CC C | TBM631 | UT | 1 | 820 | C | 2030 | TUNN | UT | C090 | EPIW | 820_AB |  |  |  | DJa | C1 |  |
| 8200TBC630 |  | Reach Cheung Sha Wan Cargo Pier Pile Obstruction | milestone | 0d | 2013-04-07 A | 2013-04-07 A | 8200TBC625 | 100% |  |  |  |  |  | DJa |  | CC C | TBM631 | UT | 1 | 820 | C | 2030 | TUNN | UT | C090 | EPIW | 820_AB |  |  |  | DJa | C1 | Ch137+730 |
| 8200TBC635z |  | Reach CP88(CH137+591) | milestone | 0d | 2013-04-16 A | 2013-04-16 A | 8200TBC635 FF-2d, 8200TBC635 SF+23d | 100% |  |  |  |  | 668m=45571m3 | DJa |  | CC C | TBM631 | UT |  |  | C |  |  |  |  |  | 820_AB |  |  |  | DJa | C1 |  |
| 8200TBC640 |  | U/T Excavation Ch137+580-137+550 |  | 2d | 2013-04-19 A | 2013-04-20 A | 8200TBC635 | 100% |  |  | Cal 5 | TBM Excavation [2047 m3]; TBM Maintenance Crew [288 h]; TBM [16 h]; TBM Operational Crew [768 h] | 30m | DJa | 2 | CC C | TBM631 | UT | 1 | 820 | C | 2030 | TUNN | UT | C090 | EPIW | 820_AB |  |  |  | DJa | C1 |  |
| 8200TBC642 |  | Reach Hoi Lai Shopping Centre (advanced work:Grouting) | milestone | 0d | 2013-04-19 A | 2013-04-19 A | 8200TBC640 | 100% |  |  | Cal 5 |  |  | DJa |  | CC C | TBM631 | UT |  |  | C |  |  |  |  |  | 820_AB |  |  |  | DJa | C1 | Ch137+550 |
| 8200TBC644 |  | U/T Excavation Ch137+550-137+200 |  | 25d | 2013-04-20 A | 2013-05-14 A | 8200TBC613, 8200TBC642, 8200TBC615, 8200TBC635z | 100% |  |  | Cal 5 | TBM Excavation [23877 m3]; TBM Maintenance Crew [3600 h]; TBM [200 h]; TBM Operational Crew [9600 h] | 350m | DJa |  | CC C | TBM631 | UT |  |  | C |  |  |  |  |  | 820_AB |  |  |  | DJa | C1 |  |
| 8200TBC644z2 |  | Reach CP87(CH137+393) | milestone | 0d | 2013-04-27 A | 2013-04-27 A | 8200CPC234b, 8200TBC644 SF+11d, 8200TBC644 FF-14d | 100% |  |  |  |  | 668m=45571m3 | DJa |  | CC C | TBM631 | UT |  |  | C |  |  |  |  |  | 820_AB |  |  |  | DJa | C1 |  |
| 8200TBC645 |  | U/T Excavation Ch137+200-137+080 |  | 19d | 2013-05-14 A | 2013-05-25 A | 8200TBC644z2, 8200TBC644 | 100% | 2013-05-14 | 2013-06-01 | Cal 5 | TBM Excavation [8186 m3]; TBM Maintenance Crew [2736 h]; TBM [152 h]; TBM Operational Crew [7296 h] | 120m | DJa |  | CC C | TBM631 | UT | 1 | 820 | C | 2030 | TUNN | UT | C090 | EPIW | 820_AB |  |  |  | DJa | C1 |  |
| 8200TBC645z |  | Reach CP86(CH137+141) | milestone | 0d | 2013-05-19 A | 2013-05-19 A | 8200TBC645 FF-10d, 8200TBC645 SF+9d, 8200CPC167b | 100% |  |  |  |  | 668m=45571m3 | DJa |  | CC C | TBM631 | UT |  |  | C |  |  |  |  |  | 820_AB |  |  |  | DJa | C1 |  |
| 8200TBC655 |  | U/T Excavation Ch137+080-136+975 |  | 17d | 2013-05-25 A | 2013-06-05 A | 8200CCG370, 8200CCG470, 8200CCG610, 8200CCG360, 8200CCG490, 8200CCG400, 8200CCG480, 8200CCG590, 8200TBC650, 8200CCG380 | 100% | 2013-05-25 | 2013-06-10 | Cal 5 | TBM Excavation [7163 m3]; TBM Maintenance Crew [2448 h]; TBM [136 h]; TBM Operational Crew [6528 h] | 105m | DJa |  | CC C | TBM631 | UT | 1 | 820 | C | 2030 | TUNN | UT | C090 | EPIW | 820_AB |  |  |  | DJa | C1 |  |
| 8200TBC650 |  | Reach Culvert WD1 Pile Obstruction &1100dia. Foul Drain | milestone | 0d | 2013-05-26 A | 2013-05-26 A | 8200CCG400, 8200CCG192, 8200TBC645, 8200TBC640, 8200CCG490 | 100% |  |  |  |  |  | DJa |  | CC C | TBM631 | UT | 1 | 820 | C | 2030 | TUNN | UT | C090 | EPIW | 820_AB |  |  |  | DJa | C1 | Ch137+080 |
| 8200TBC660 |  | U/T Excavation Ch136+975-136+910 |  | 16d | 2013-06-05 A | 2013-06-12 A | 8200TBC650, 8200TBC655, 8200CCF390 FF+2d | 100% | 2013-06-05 | 2013-06-20 | Cal 7 | TBM Excavation [4434 m3]; TBM Maintenance Crew [2304 h]; TBM [128 h]; TBM Operational Crew [6144 h] | 65m | DJa |  | CC C | TBM631 | UT | 1 | 820 | C | 2030 | TUNN | UT | C090 | EPIW | 820_AB |  |  |  | DJa | C1 |  |
| 8200TBC665 |  | Reach Lai Chi Kok DSD Obstructions | milestone | 0d | 2013-06-07 A | 2013-06-07 A | 8200TBC660, 8200CCF510 | 100% |  |  |  |  |  | DJa |  | CC C | TBM631 | UT | 1 | 820 | C | 2030 | TUNN | UT | C090 | EPIW | 820_AB |  |  |  | DJa | C1 | Ch136+970 |
| 8200TBC670 |  | U/T Excavation Ch136+910-136+836 |  | 7d | 2013-06-12 A | 2013-06-26 A | 8200TBC665, 8200CCF390, 8200CCF510, 8200TBC625 SF, 8200CCF590 | 100% | 2013-06-12 | 2013-06-18 | Cal 7 | TBM Excavation [5048 m3]; TBM Maintenance Crew [1008 h]; TBM [56 h]; TBM Operational Crew [2688 h] | 74m | DJa |  | CC C | TBM631 | UT | 1 | 820 | C | 2030 | TUNN | UT | C090 | EPIW | 820_AB |  |  |  | DJa | C1 |  |
| 8200TBC670z |  | Reach CP85(CH136+879) | milestone | 0d | 2013-06-17 A | 2013-06-17 A | 8200TBC670 FF-4d, 8200TBC670 SF+3d | 100% |  |  |  |  | 668m=45571m3 | DJa |  | CC C | TBM631 | UT |  |  | C |  |  |  |  |  | 820_AB |  |  |  | DJa | C1 |  |
| 8200TBC675 |  | U/T Excavation Ch136+836-136+656 |  | 18d | 2013-06-26 A | 2013-07-24 A | 8200TBC670 | 100% | 2013-06-26 | 2013-07-13 | Cal 7 | TBM Excavation [12280 m3]; TBM Maintenance Crew [2592 h]; TBM [144 h]; TBM Operational Crew [6912 h] | 180m | DJa |  | CC C | TBM631 | UT | 1 | 820 | C | 2030 | TUNN | UT | C090 | EPIW | 820_AB |  |  |  | DJa | C1 |  |
| 8200TBC678a |  | U/T Excavation Ch136+656-136+601-XRL821 |  | 6d | 2013-07-24 A | 2013-07-28 A | 8200TBC675 | 100% | 2013-07-24 | 2013-07-29 | Cal 7 | TBM Excavation [3752.1 m3]; TBM Operational Crew [2304 h]; TBM Maintenance Crew [864 h]; TBM [48 h] | 671m= 45776m3 | DJa |  | CC C | TBM631 | UT |  |  | C |  |  |  |  |  | 820_AB |  |  |  | DJa | C1 |  |
| 8200TBC678a1 |  | Reach CP84 (CH136+616)- XRL821 | milestone | 0d | 2013-07-27 A | 2013-07-27 A | 8200TBC678a SF+4d, 8200TBC678a FF-2d | 100% |  |  |  |  | 668m=45571m3 | DJa |  | CC C | TBM631 | UT |  |  | C |  |  |  |  |  | 820_AB |  |  |  | DJa | C1 |  |
| 8200TBC678b |  | U/T Excavation Ch136+601-136+365-XRL821 |  | 17d | 2013-07-28 A | 2013-08-23 A | 8200TBC678a1, 8200TBC678a | 100% | 2013-07-28 | 2013-08-13 | Cal 7 | TBM [136 h]; TBM Maintenance Crew [2448 h]; TBM Operational Crew [6528 h]; TBM Excavation [16099.9 m3] | 671m= 45776m3 | DJa |  | CC C | TBM631 | UT |  |  | C |  |  |  |  |  | 820_AB |  |  |  | DJa | C1 |  |
| 8200TBC678c |  | U/T Excavation Ch136+365-136+114-XRL821 |  | 27d | 2013-08-23 A | 2013-09-17 A | 8200TBC678b, 8200TBC678b1 | 100% | 2013-08-23 | 2013-09-18 | Cal 7 | TBM Excavation [17123.2 m3]; TBM Operational Crew [10368 h]; TBM Maintenance Crew [3888 h]; TBM [216 h] | 671m= 45776m3 | DJa |  | CC C | TBM631 | UT |  |  | C |  |  |  |  |  | 820_AB |  |  |  | DJa | C1 |  |
| 8200TBC678b1 |  | Reach CP83 (CH136+365)- XRL821 | milestone | 0d | 2013-08-23 A | 2013-08-23 A | 8200TBC678b | 100% |  |  |  |  | 668m=45571m3 | DJa |  | CC C | TBM631 | UT |  |  | C |  |  |  |  |  | 820_AB |  |  |  | DJa | C1 |  |
| 8200TBC678d |  | U/T Excavation Ch136+114 -135+985-XRL821 |  | 12d | 2013-09-17 A | 2013-10-06 A | 8200TBC678c1, 8200TBC678c | 100% | 2013-09-17 | 2013-09-28 | Cal 7 | TBM Excavation [8800.38 m3]; TBM Operational Crew [4608 h]; TBM Maintenance Crew [1728 h]; TBM [96 h] | 671m= 45776m3 | DJa |  | CC C | TBM631 | UT |  |  | C |  |  |  |  |  | 820_AB |  |  |  | DJa | C1 |  |
| 8200TBC678c1 |  | Reach CP82 (CH136+114)- XRL821 | milestone | 0d | 2013-09-17 A | 2013-09-17 A | 8200TBC678c | 100% |  |  |  |  | 668m=45571m3 | DJa |  | CC C | TBM631 | UT |  |  | C |  |  |  |  |  | 820_AB |  |  |  | DJa | C1 |  |
| 8200TBC679 |  | U/T Excavation Ch135+985-135+750-XRL821 (+235m) (Break-out) |  | 22d | 2013-10-06 A | 2013-11-09 A | 8200TBC678d | 100% | 2013-10-06 | 2013-10-27 | Cal 7 | TBM Excavation [16031.7 m3]; TBM [176 h]; TBM Operational Crew [8448 h]; TBM Maintenance Crew [3168 h] | 668m=45571m3 | DJa |  | CC C | TBM631 | UT |  |  | C |  |  |  |  |  | 820_AB |  |  |  | DJa | C1 |  |
| 8200TBC679a |  | Reach CP81 (CH135+863)- XRL821 | milestone | 0d | 2013-10-22 A | 2013-10-22 A | 8200TBC679 SF+10d, 8200TBC679 FF-8d | 100% |  |  |  |  | 668m=45571m3 |  |  | CC C | TBM631 | UT |  |  | C |  |  |  |  |  | 820_AB |  |  |  | DJa | C1 |  |
| 8200TBC679b |  | U/T exit inside TBM Cavern - XRL821 |  | 5d | 2013-11-10 A | 2013-11-14 A | 8200TBC679, 8200TBC678d, 8200sum040 FF | 100% |  |  | Cal 7 | TBM Operational Crew [1920 h]; TBM Excavation; TBM Maintenance Crew [720 h] |  | DJa |  | CC C | TBM631 | UT |  |  | C |  |  |  |  |  | 820_AB |  |  |  | DJa | C1 |  |
| 8200TBC680 |  | TBM (S631-1) Dismantling & Backup pull back |  | 45d | 2013-11-15 A | 2013-12-29 A | 8200TBC620, 8200TBC679b, 8200TBC620 SF, 8200TBC678c, 8200TBC675 | 100% |  |  |  | TBM Maintenance Crew [6480 h] |  | DJa |  | CC C | TBM631 | UT | 1 | 820 | C | 2030 | TUNN | UT | C090 | EPIW | 820_AB |  |  |  | DJa | C1 |  |
| 8200TBC685 |  | Set up Equipment for Invert Construction (Ch137+810 to Ch135+750-XRL821 ) |  | 12d | 2014-01-06 A | 2014-01-18 A | 8210CPC220c, 8210CPC470a, 8200TBC680 FS+2d | 100% |  |  | Cal 3 | Other Skill Labour (Civil) [576 h] |  | DJa |  | CC C | TBM631 | UT | 1 | 820 | C | 2030 | TUNS | DT | C090 | EPIW | 820_AB |  |  |  | JMB | C1 |  |
| 8200TBC690a |  | 820 section - Tunnel Invert & Walkway (UT-Northbound) (Ch137+810 to Ch136+640) |  | 70d | 2014-01-20 A | 2014-03-21 A | 8200CPC205a SS-12d, 8200CPC330a FS-45d, 8200TBC685, 8200CPC140c, 8200TBC680, 8200CPC270a SS-30d | 100% | 2014-01-20 | 2014-04-16 | Cal 3 | Steel Fixer [1120 h]; Concretor [1120 h]; Other Skill Labour (Civil) [1120 h] | 871m | DJa |  | CC C | TBM631 | UT | 1 | 820 | C | 2030 | TUNN | UT | C090 | EPIW | 820_AB |  |  |  | JMB | C1 |  |
| 8200TBC690b |  | 821 section - Tunnel Invert & Walkway (UT-Northbound) (Ch136+640 to Ch135+750) |  | 52d | 2014-02-19 A | 2014-04-07 A | 8200TBC690a | 100% | 2014-02-19 | 2014-04-25 | Cal 3 | Steel Fixer [832 h]; Concretor [832 h]; Other Skill Labour (Civil) [832 h] | 871m | DJa |  | CC C | TBM631 | UT | 1 | 820 | C | 2030 | TUNN | UT | C090 | EPIW | 820_AB |  |  |  | JMB | C1 |  |
| 8200TBC720 |  | 820 Deg. 1 Works Ch137+810 to Ch136+640 (4B(i) Target: 1-Jun-14) |  | 70d | 2014-03-01 A | 2014-04-05 A | 8200TBC690a SS+37d | 100% | 2014-03-01 | 2014-05-29 | Cal 3 | Other Skill Labour (Civil) [2240 h] |  | DJa |  | CC C | TBM631 | UT | 1 | 820 | C | 2030 | TUNN | UT |  |  | 820_AB |  |  |  | JMB | C1 |  |
| 8200TBC710 |  | 821 Deg. 1 Works Ch136+640 to Ch135+750 (SA#3: 29-Jun-14) |  | 40d | 2014-03-10 A | 2014-04-18 A | 8200TBC690b SS+20d | 100% | 2014-03-10 | 2014-04-30 | Cal 3 | Other Skill Labour (Civil) [1280 h] |  | DJa |  | CC C | TBM631 | UT | 1 | 820 | C | 2030 | TUNN | UT |  |  | 820_AB |  |  |  | JMB | C1 |  |

Notes:
- 8200TBC625: Basis & Assumptions: - 8 months for 16h/d? - 9. months for 14h/d
- 8200TBC635: Basis & Assumptions: - 8 months for 16h/d? - 9. months for 14h/d
- 8200TBC640: Basis & Assumptions: - 8 months for 16h/d? - 9. months for 14h/d
- 8200TBC645: Basis & Assumptions: - 8 months for 16h/d? - 9. months for 14h/d
- 8200TBC655: Basis & Assumptions: - 8 months for 16h/d? - 9. months for 14h/d
- 8200TBC660: Basis & Assumptions: - 8 months for 16h/d? - 9. months for 14h/d
- 8200TBC670: Basis & Assumptions: - 8 months for 16h/d? - 9. months for 14h/d
- 8200TBC675: Basis & Assumptions: - 8 months for 16h/d? - 9. months for 14h/d

| ID | WBS | Activity | Type | Duration | Start | Finish | Predecessors | Complete | Planned start | Planned finish | Constraint | Calendar | Resources | Sum1 | LEVEL 1 | LEVEL 2 | LEVEL 3 | SUMMARY | Contracts | Cost Centre | 820_As-built | TBM DT s | TBM DT f | Order | QUANTITY | Priority A | TBM UT f | TBM UT s | Responsible (bm makes Global) | Location of Works | Sub-locationof Works | Areas/ Rooms | Phases of Works | Classification of Works | Responsible by | Classify |
| --- | --- | --- | --- | --- | --- | --- | --- | --- | --- | --- | --- | --- | --- | --- | --- | --- | --- | --- | --- | --- | --- | --- | --- | --- | --- | --- | --- | --- | --- | --- | --- | --- | --- | --- | --- | --- |
|  | 40 | **TBM (S630-1) Excavation with Deg.1 Works** |  |  | 2010-08-24 | 2015-02-28 |  |  |  |  |  |  |  |  |  |  |  |  |  |  |  |  |  |  |  |  |  |  |  |  |  |  |  |  |  |  |
| 8200sum 025 |  | Ground Treatment Wk at 811A Retrieval Shaft |  | 96d | 2011-02-03 A | 2011-06-09 A | 8200TBC160 SS | 100% | 2011-06-20 | 2011-09-23 |  |  | Drilling Rig; Plant Operator; Other Skill Labour (Civil) | S2 | CC C | CONSTRU | CRIT DA | A | 820 | C | 820_AB |  |  |  |  |  |  |  |  |  |  |  |  |  |  |  |
| 8200y0060 |  | Ground Treatment Wk at 811A Retrieval Shaft (SDT & SUT) | level of effort | 96d | 2011-02-07 A | 2011-06-09 A | 8200TBC115 SS | 100% | 2011-08-31 | 2011-12-04 |  |  | Drilling Rig; Plant Operator; Other Skill Labour (Civil) | S2 | CC C | CONSTRU | CRIT DA | A | 820 | C | 820_AB | 2013-02-21 | 2013-02-21 | 1 |  |  |  |  |  |  |  |  |  |  |  |  |
| 8200sum 035 |  | Ground Wks for Buildings Protection (DT) - Hoi Wang Road | level of effort | 419d | 2011-04-14 A | 2012-11-23 A | 8200TBC413d SS, 8200TBC413e SS, 8200TBC413a SS | 100% | 2011-08-01 | 2012-09-22 |  |  | Drilling Rig; Plant Operator; Other Skill Labour (Civil) | S2 | CC C | CONSTRU | CRIT DA | A | 820 | C | 820_AB | 2012-10-12 | 2012-10-12 |  |  |  |  |  |  |  |  |  |  |  |  |  |
| 8200y0070 |  | Ground Wks for Buildings Protection (SDT) - Hoi Wang Road | level of effort | 414d | 2011-04-14 A | 2012-11-23 A | 8200TBC413e SS, 8200TBC413a SS, 8200TBC413d SS | 100% | 2011-08-01 | 2012-09-17 |  |  | Drilling Rig; Plant Operator; Other Skill Labour (Civil) | S2 | CC C | CONSTRU | CRIT DA | A | 820 | C | 820_AB | 2013-01-22 | 2013-01-22 | 2 |  |  |  |  |  |  |  |  |  |  |  |  |
| 8200y0100 |  | Grouting Wk@N/B Ch140+340: Bldg. Foundation (Y.M.T.School) (SUT) | level of effort | 132d | 2011-09-15 A | 2012-01-14 A | 8200TBC845 | 100% | 2012-02-02 | 2012-06-12 |  |  | Drilling Rig; Other Skill Labour (Civil) | S2 | CC C | TBM630 | UT | 1 | 820 | C | 820_AB |  |  | 4 | 20mL | 1 | 2014-03-11 | 2014-03-11 | DJa | 2010 | TUNN | UT | C090 | EPIW |  |  |
| 8200sum048 |  | Piles Removal@CLP Equipment Bldg.& Footbridges KF-119 by 805 | milestone | 0d | 2011-11-13 A | 2011-11-13 A | 8200PD7020 FF | 100% | 2012-01-15 | 2012-01-15 |  |  |  | S2 | CC C | TBM631 | DT | A | 820 | C | 820_AB | 2012-05-16 | 2012-05-16 |  |  |  | 2013-06-10 | 2013-06-10 | DJa | 2030 | TUNS | DT | C090 | EPIW |  |  |
| 8200y0090 |  | Piles Removal@CLP Equipment Bldg.& Footbridges KF-119 by 805 (SDT & SUT) | milestone | 0d | 2011-11-13 A | 2011-11-13 A | 8200PD7020 FF | 100% |  |  |  |  |  | S2 | CC C | TBM631 | DT | A | 820 | C | 820_AB | 2012-08-30 | 2012-08-30 | 5 |  |  | 2013-09-27 | 2013-09-27 | DJa | 2030 | TUNS | DT | C090 | EPIW |  |  |
| 8200sum 045 |  | Ground Wks for Convergence Zones | level of effort | 317d | 2011-11-16 A | 2012-08-31 A | 8200TBC430a10 SS, 8200TBC4300a SS, 8200TBC430a SS | 100% | 2012-01-16 | 2012-11-27 |  |  | Drilling Rig; Plant Operator; Other Skill Labour (Civil) | S2 | CC C | CONSTRU | CRIT DA | A | 820 | C | 820_AB | 2012-10-28 | 2012-10-28 |  |  |  |  |  |  |  |  |  |  |  |  |  |
| 8200y0080 |  | Ground Wks for Convergence Zones (SDT & SUT) | level of effort | 379d | 2011-11-16 A | 2012-12-01 A | 8200TBC430a10 SS, 8200TBC4300a SS, 8200TBC430a SS | 100% | 2012-01-16 | 2013-01-28 |  |  | Drilling Rig; Plant Operator; Other Skill Labour (Civil) | S2 | CC C | CONSTRU | CRIT DA | A | 820 | C | 820_AB | 2013-02-13 | 2013-02-13 | 3 |  |  |  |  |  |  |  |  |  |  |  |  |
| 8200y0110 |  | Pile Removal for Nam Cheong Property Development by 802 (SDT & SUT) | milestone | 0d | 2011-12-11 A | 2011-12-11 A | 8200TBC461 FF, 8200TBC891 FF | 100% | 2012-01-15 | 2012-01-15 |  |  |  | S3 |  |  |  |  |  |  | 820_AB | 2012-05-20 | 2012-05-20 | 6 |  |  | 2013-06-22 | 2013-06-22 |  |  |  |  |  |  |  |  |
| 8200y0760 |  | TKT Grouting Works - Zone 2 | level of effort | 218d | 2012-01-16 A | 2012-08-20 A | 8200TBC1323 SS | 100% |  |  |  |  | Drilling Rig; Other Skill Labour (Civil) | S2 | CC C | TBM630 | UT | 1 | 820 | C | 820_AB |  |  | 4 | 20mL | 1 | 2014-03-11 | 2014-03-11 | DJa | 2010 | TUNN | UT | C090 | EPIW |  |  |
| 8200y0112 |  | TKT Grouting Works - Zone 1 | level of effort | 159d | 2012-02-13 A | 2012-07-20 A | 8200TBC1258 SS | 100% |  |  |  |  | Drilling Rig; Other Skill Labour (Civil) | S2 | CC C | TBM630 | UT | 1 | 820 | C | 820_AB |  |  | 4 | 20mL | 1 | 2014-03-11 | 2014-03-11 | DJa | 2010 | TUNN | UT | C090 | EPIW |  |  |
| 8200y0030 |  | TBM (S630-1) South-DT Excavation | level of effort | 283d | 2012-04-30 A | 2013-09-29 A | 8200TBC440 SS | 100% | 2012-03-30 | 2013-01-06 |  |  |  | S0 |  |  |  |  |  |  | 820_AB |  |  | 9 |  |  |  |  |  |  |  |  |  |  |  |  |
| 8200sum075 |  | Pile Removal for Nam Cheong Property Development by 802 | milestone | 0d | 2012-04-30 A | 2012-04-30 A | 8200TBC891 FF, 8200TBC461 FF | 100% |  |  |  |  |  | S3 |  |  |  |  |  |  | 820_AB | 2012-02-12 | 2012-02-12 |  |  |  | 2013-03-21 | 2013-03-21 |  |  |  |  |  |  |  |  |
| 8200y0770 |  | TKT Grouting Works - Zone 4 | level of effort | 225d | 2012-07-03 A | 2013-04-20 A | 8200TBC1218 SS | 100% | 2012-03-26 | 2012-11-05 |  |  | Drilling Rig; Other Skill Labour (Civil) | S2 | CC C | TBM630 | UT | 1 | 820 | C | 820_AB |  |  | 4 | 20mL | 1 | 2014-03-11 | 2014-03-11 | DJa | 2010 | TUNN | UT | C090 | EPIW |  |  |
| 8200y0780 |  | TKT Grouting Works - Zone 5 | level of effort | 196d | 2012-10-03 A | 2013-03-28 A | 8200TBC1335 SS | 100% | 2012-10-09 | 2013-04-22 |  |  | Drilling Rig; Other Skill Labour (Civil) | S2 | CC C | TBM630 | UT | 1 | 820 | C | 820_AB |  |  | 4 | 20mL | 1 | 2014-03-11 | 2014-03-11 | DJa | 2010 | TUNN | UT | C090 | EPIW |  |  |
| 8200y0050 |  | TBM (S630-1) South -UT Excavation | level of effort | 246d | 2013-12-14 A | 2014-10-04 A | 8200TBC860 SS | 100% | 2014-01-12 | 2014-09-14 |  |  |  | S1 |  |  |  |  |  |  | 820_AB |  |  | 11 |  |  |  |  |  |  |  |  |  |  |  |  |
|  | 10 | **Downtrack Construction (South)** |  |  | 2010-08-24 | 2014-05-03 |  |  |  |  |  |  |  |  |  |  |  |  |  |  |  |  |  |  |  |  |  |  |  |  |  |  |  |  |  |  |
| 8200sum030 |  | TBM (S630-1) South-DT Excavation |  | 342d | 2012-04-12 A | 2013-09-24 A | 8200TBC432a | 100% | 2012-04-12 | 2013-03-19 |  |  |  | S0 |  |  |  |  |  |  | 820_AB |  |  |  |  |  |  |  |  |  |  |  |  |  |  |  |
|  | 2 | **Ground Treatment (South-DT)** |  |  | 2010-08-24 | 2014-01-10 |  |  |  |  |  |  |  |  |  |  |  |  |  |  |  |  |  |  |  |  |  |  |  |  |  |  |  |  |  |  |
| 8200TBC426 |  | GI works for Hoi Wang Road |  | 107d | 2010-08-24 A | 2011-01-05 A | 8200KD1020 FS+113d | 100% | 2011-02-01 | 2011-06-23 |  | Cal 1 | Drilling Rig [53 h]; Other Skill Labour (Civil) [2544 h] |  | CC C | TBM630 | DT |  |  | C | 820_AB |  |  |  |  |  |  |  | DCl |  |  |  |  |  | DJa |  |
| 8200TBC427 |  | GI works for Tai Kok Tsui |  | 235d | 2010-09-03 A | 2011-07-25 A | 8200KD1020 FS+114d | 100% | 2011-02-01 | 2011-12-01 |  | Cal 1 | Drilling Rig [44 h]; Other Skill Labour (Civil) [2112 h] |  | CC C | TBM630 | DT |  |  | C | 820_AB |  |  |  |  |  |  |  | DCl |  |  |  |  |  | DJa |  |
| 8200TBC411 |  | TTMS for Building Foundation Grouting Works (Stage 1) |  | 81d | 2011-01-03 A | 2011-04-13 A |  | 100% | 2011-02-28 | 2011-06-15 |  | Cal 1 | Other Skill Labour (Civil) [3600 h]; Drilling Rig [75 h] |  | CC C | TBM630 | DT | 1 | 820 | C | 820_AB |  |  |  | 32mL | 1 |  |  |  | 2010 | TUNS | DT | C090 | EPIW | DJa |  |
| 8200TBC428b |  | Design of Ground Treatment for Tunneling (Ch140+080-Ch140+200) |  | 80d | 2011-01-05 A | 2011-03-25 A | 8200TBC426 | 100% | 2011-04-08 | 2011-06-26 |  |  |  |  | CC C | TBM630 | DT |  |  | C | 820_AB |  |  |  |  |  |  |  |  |  |  |  |  |  | DJa |  |
| 8200TBC110 |  | Access Date- Works Area 12.2 | milestone | 0d | 2011-02-02 A | 2011-02-02 A | 8200PD6010 | 100% | 2011-02-28 | 2011-02-28 |  |  |  |  | CC C | TBM630 | CRIT DA | A | 820 | C | 820_AB |  |  |  |  |  |  |  |  |  |  |  |  |  | DJa |  |
| 8200TBC115 |  | Site Set up for Ground Treatment at 811A Retrieval Shaft |  | 13d | 2011-02-07 A | 2011-02-19 A |  | 100% | 2011-06-19 | 2011-07-01 |  |  | Plant Operator [885.07 h]; Other Skill Labour (Civil) [1470.44 h] |  | CC C | TBM630 | CRIT DA | A | 820 | C | 820_AB |  |  |  |  |  |  |  |  |  |  |  |  |  | DJa |  |
| 8200TBC160 |  | Ground Treatment Wk at 811A Retrieval Shaft |  | 109d | 2011-02-21 A | 2011-06-09 A | 8200y0060 FF, 8200TBC110, 8200CEC100, 8200TBC115 | 100% | 2011-06-19 | 2011-10-05 |  |  | Drilling Rig [96 h]; Plant Operator [768 h]; Other Skill Labour (Civil) [4608 h] |  | CC C | TBM630 | CRIT DA | A | 820 | C | 820_AB |  |  |  |  |  |  |  |  |  |  |  |  |  | DJa |  |
| 8200TBC428c |  | MTR's Review & Comments for Design of Ground Treatment for Tunneling | milestone | 0d | 2011-03-25 A | 2011-03-25 A | 8200TBC428b | 100% | 2011-06-19 | 2011-06-19 |  |  |  |  | CC C | TBM630 | DT |  |  | C | 820_AB |  |  |  |  |  |  |  |  |  |  |  |  |  | DJa |  |
| 8200TBC428d |  | MTR's Comments & Approval |  | 20d | 2011-03-26 A | 2011-04-14 A | 8200TBC428c | 100% | 2011-06-19 | 2011-07-08 |  |  |  |  | CC C | TBM630 | DT |  |  | C | 820_AB |  |  |  |  |  |  |  |  |  |  |  |  |  | DJa |  |
| 8200TBC411a |  | Accesss Date for Wk Area 12.1 (Subject to SLG Approval) | milestone | 0d | 2011-04-13 A | 2011-04-13 A | 8200TMC170a, 8200TBC411 | 100% | 2011-07-21 | 2011-07-21 |  |  |  |  | CC C | TBM630 | DT | 1 | 820 | C | 820_AB |  |  |  |  |  |  |  |  | 2010 | TUNS | DT | C090 |  | DJa |  |
| 8200TBC413a |  | Grouting Wk@Ch140+150: Bldg.Foundation (Charming Garden Blk.8) |  | 34d | 2011-04-14 A | 2011-06-01 A | 8200MTC280 FS-45d, 8200TBC411a | 100% | 2011-07-21 | 2011-08-31 |  | Cal 1 | Drilling Rig [65 h]; Other Skill Labour (Civil) [6240 h] |  | CC C | TBM630 | DT | 1 | 820 | C | 820_AB |  |  |  | 32mL | 1 |  |  |  | 2010 | TUNS | DT | C090 | EPIW | DJa |  |
| 8200TBC428d10 |  | Prepared Re-submission of Ground Treatment for Tunneling |  | 12d | 2011-04-15 A | 2011-04-26 A | 8200TBC428d | 100% | 2011-06-19 | 2011-06-30 |  |  |  |  | CC C | TBM630 | DT |  |  | C | 820_AB |  |  |  |  |  |  |  |  |  |  |  |  |  | DJa |  |
| 8200TBC428d20 |  | Design Approval & Issue Construction Instruction MTR |  | 15d | 2011-04-27 A | 2011-05-11 A | 8200TBC428d10 | 100% | 2011-06-19 | 2011-07-03 |  |  |  |  | CC C | TBM630 | DT |  |  | C | 820_AB |  |  |  |  |  |  |  |  |  |  |  |  |  | DJa |  |
| 8200TBC413b |  | Suspension of Grouting Wk@S/B Ch140+150(Charming Garden Blk.8) | milestone | 0d | 2011-06-02 A | 2011-06-02 A |  | 100% | 2011-06-30 | 2011-06-30 | start on 2011-06-02 | Cal 1 |  |  | CC C | TBM630 | DT | 1 | 820 | C | 820_AB |  |  |  | 32mL | 1 |  |  |  | 2010 | TUNS | DT | C090 | EPIW | DJa |  |
| 8200TBC413c |  | Suspension Period for Grouting Wk in (Charming Garden Blk.8) |  | 8d | 2011-06-02 A | 2011-06-13 A | 8200TBC413b | 100% | 2011-08-01 | 2011-08-09 |  | Cal 1 |  |  | CC C | TBM630 | DT | 1 | 820 | C | 820_AB |  |  |  | 32mL | 1 |  |  |  | 2010 | TUNS | DT | C090 | EPIW | DJa |  |
| 8200TBC413d |  | Re-mobilization for Grouting Wk in (Charming Garden Blk.8) |  | 2d | 2011-06-14 A | 2011-06-15 A | 8200TBC413c, 8200MTC280 FS-45d, 8200TBC411a | 100% | 2011-08-01 | 2011-08-02 |  | Cal 1 | Drilling Rig [2 h]; Other Skill Labour (Civil) [96 h] |  | CC C | TBM630 | DT | 1 | 820 | C | 820_AB |  |  |  | 32mL | 1 |  |  |  | 2010 | TUNS | DT | C090 | EPIW | DJa |  |
| 8200TBC413e |  | Grouting Wk@ Ch140+150:(Charming Garden Blk.8) remaining |  | 34d | 2011-06-16 A | 2011-07-29 A | 8200TBC411a, 8200TBC413d, 8200MTC280 FS-45d, 8200TBC413d FF | 100% | 2011-07-21 | 2011-08-31 |  | Cal 1 | Drilling Rig [34 h]; Other Skill Labour (Civil) [1632 h] |  | CC C | TBM630 | DT | 1 | 820 | C | 820_AB |  |  |  | 32mL | 1 |  |  |  | 2010 | TUNS | DT | C090 | EPIW | DJa |  |
| 8200TBC413f |  | Reinstatement@ Ch140+150:(Charming Garden Blk.8) & TTMs Stage 2 |  | 12d | 2011-07-30 A | 2011-08-13 A | 8200MTC280 FS-45d, 8200TBC411a, 8200TBC413e | 100% | 2011-08-31 | 2011-09-15 |  | Cal 1 | Drilling Rig [12 h]; Other Skill Labour (Civil) [576 h] |  | CC C | TBM630 | DT | 1 | 820 | C | 820_AB |  |  |  | 32mL | 1 |  |  |  | 2010 | TUNS | DT | C090 | EPIW | DJa |  |
| 8200TBC430 |  | TTMS for Convergence Zone (Stage 2 & 3) |  | 14d | 2011-08-01 A | 2011-08-18 A | 8200TBC428d | 100% | 2011-08-31 | 2011-09-17 |  | Cal 1 | Other Skill Labour (Civil) [672 h] |  | CC C | TBM630 | DT | 1 | 820 | C | 820_AB |  |  |  | 32mL | 1 |  |  |  | 2010 | TUNS | DT | C090 | EPIW | DJa |  |
| 8200TBC415 |  | Grouting Wk@S/B Ch140+080: Bldg.Foundation (Hoi Fu Court) |  | 101d | 2011-08-01 A | 2012-02-11 A | 8200TBC413a, 8200MTC280, 8200TBC411a, 8200TBC413d, 8200TBC413e, 8200TBC426 | 100% | 2011-08-09 | 2011-12-12 |  | Cal 1 | Drilling Rig [101 h]; Other Skill Labour (Civil) [14016 h] |  | CC C | TBM630 | DT | 1 | 820 | C | 820_AB |  |  |  | 37mL | 1 |  |  |  | 2010 | TUNS | DT | C090 | EPIW | DJa |  |
| 8200TBC4300a |  | Install Sleeve Pipe (Zone B) |  | 39d | 2011-11-16 A | 2012-01-04 A | 8200TBC430 FS+22d, 8200TBC428d20 | 100% | 2012-01-16 | 2012-03-03 |  | Cal 1 | Drilling Rig [39 h]; Other Skill Labour (Civil) [1872 h] |  | CC C | TBM630 | DT |  |  | C | 820_AB |  |  |  |  | 2 |  |  | INg |  |  |  |  |  | DJa | TBM |
| 8200TBC430b |  | Install Sleeve Pipe (Zones D) |  | 38d | 2011-11-28 A | 2012-01-14 A | 8200TBC430, 8200TBC4300a | 100% | 2012-01-16 | 2012-03-02 |  | Cal 1 | Drilling Rig [38 h]; Other Skill Labour (Civil) [18912 h]; Plant Operator [304 h] |  | CC C | TBM630 | DT |  |  | C | 820_AB |  |  |  |  | 2 |  |  | INg |  |  |  |  |  | DJa | TBM |
| 8200TBC430b10 |  | Convergence Zone Grouting Wk@ Ch140+361 to Ch140+380 (Zones D) |  | 74d | 2012-01-03 A | 2012-03-31 A | 8200TBC430b, 8200TBC430 | 100% | 2012-01-16 | 2012-04-21 |  | Cal 1 | Drilling Rig [74 h]; Other Skill Labour (Civil) [3552 h] |  | CC C | TBM630 | DT |  |  | C | 820_AB |  |  |  |  | 2 |  |  | INg |  |  |  |  |  | DJa | TBM |
| 8200TBC430a |  | Convergence Zone Grouting Wk@ Ch140+330 to Ch140+342 (Zone B) |  | 96d | 2012-01-05 A | 2012-08-31 A | 8200TBC428d20, 8200MSC210, 8200TBC430, 8200TBC4300a | 100% | 2012-01-16 | 2012-05-22 |  | Cal 1 | Drilling Rig [96 h]; Other Skill Labour (Civil) [4608 h] |  | CC C | TBM630 | DT |  |  | C | 820_AB |  |  |  |  | 2 |  |  | INg |  |  |  |  |  | DJa | TBM |
| 8200TBC430d |  | Install Sleeve Pipe (Zone A) |  | 24d | 2012-02-01 A | 2012-02-29 A | 8200sum 045 FF, 8200TBC430b FS+12d, 8200y0080 FF | 100% | 2012-02-01 | 2012-02-28 |  | Cal 1 | Drilling Rig [24 h]; Other Skill Labour (Civil) [1152 h] |  | CC C | TBM630 | DT |  |  | C | 820_AB |  |  |  |  | 2 |  |  | INg |  |  |  |  |  | DJa | TBM |
| 8200TBC415a |  | Reinstatement @ Hoi Fu Court |  | 62d | 2012-02-13 A | 2012-03-15 A | 8200TBC415 | 100% | 2011-08-31 | 2011-11-16 |  | Cal 1 | Drilling Rig [62 h]; Other Skill Labour (Civil) [2976 h] |  | CC C | TBM630 | DT | 1 | 820 | C | 820_AB |  |  |  | 37mL | 1 |  |  |  | 2010 | TUNS | DT | C090 | EPIW | DJa |  |
| 8200TBC430d0 |  | Convergence Zone Grouting Wk@ Ch140+287 to Ch140+330 (Zone A) |  | 70d | 2012-03-15 A | 2012-08-31 A | 8200TBC430b, 8200y0080 FF, 8200TBC430b10, 8200TBC430d, 8200sum 045 FF | 100% | 2012-04-02 | 2012-07-09 |  | Cal 1 | Drilling Rig [70 h]; Other Skill Labour (Civil) [3360 h] |  | CC C | TBM630 | DT |  |  | C | 820_AB |  |  |  |  | 2 |  |  | INg |  |  |  |  |  | DJa | TBM |
| 8200TBC430e |  | Install Sleeve Pipe (Zone C) |  | 24d | 2012-07-16 A | 2012-08-15 A | 8200y0080 FF, 8200sum 045, 8200TBC430d1 | 100% | 2012-06-02 | 2012-07-04 |  | Cal 1 | Drilling Rig [24 h]; Other Skill Labour (Civil) [1152 h] |  | CC C | TBM630 | DT |  |  | C | 820_AB |  |  |  |  | 2 |  |  | INg |  |  |  |  |  | DJa | TBM |
| 8200TBC420 |  | TTMS for Building Foundation Grouting Works (Stage 2) & Site Setup |  | 24d | 2012-08-01 A | 2012-08-31 A | 8200TBC415, 8200TBC110, 8200TBC415a | 100% | 2012-02-22 | 2012-03-21 |  | Cal 1 | Drilling Rig [24 h]; Other Skill Labour (Civil) [1152 h] |  | CC C | TBM630 | DT | 1 | 820 | C | 820_AB |  |  |  | 32mL | 1 |  |  |  | 2010 | TUNS | DT | C090 | EPIW | DJa |  |
| 8200TBC430e10 |  | Convergence Zone Grouting Wk@ Ch140+342 to Ch140+361 (Zone C) |  | 96d | 2012-08-16 A | 2012-12-01 A | 8200y0080 FF, 8200TBC430e, 8200sum 045, 8200TBC430d1 | 100% | 2012-07-05 | 2012-11-03 |  | Cal 1 | Other Skill Labour (Civil) [4608 h]; Drilling Rig [96 h] |  | CC C | TBM630 | DT |  |  | C | 820_AB |  |  |  |  | 2 |  |  | INg |  |  |  |  |  | DJa | TBM |
| 8200TBC423 |  | Install Sleeve for Grouting works (Charming Garden Blk.9) |  | 24d | 2012-09-03 A | 2012-09-15 A | 8200sum 035 FF, 8200y0070 FF, 8200TBC413f, 8200TBC420, 8200TBC411a, 8200TBC415 | 100% | 2012-08-31 | 2012-09-29 |  | Cal 1 | Drilling Rig [24 h]; Other Skill Labour (Civil) [1152 h] |  | CC C | TBM630 | DT | 1 | 820 | C | 820_AB |  |  |  | 20mL | 1 |  |  |  | 2010 | TUNS | DT | C090 | EPIW | DJa |  |
| 8200TBC425 |  | Grouting Wk@S/B Ch140+200: Bldg.Foundation (Charming Garden Blk.9) |  | 22d | 2012-09-24 A | 2012-11-23 A | 8200sum 035 FF, 8200TBC423, 8200y0070 FF, 8200TBC411a, 8200TBC415, 8200TBC413f, 8200TBC420 | 100% | 2012-10-03 | 2012-10-29 |  | Cal 1 | Drilling Rig [22 h]; Other Skill Labour (Civil) [1056 h] |  | CC C | TBM630 | DT | 1 | 820 | C | 820_AB |  |  |  | 20mL | 1 |  |  |  | 2010 | TUNS | DT | C090 | EPIW | DJa |  |
| 8200TBC430d1 |  | Enlarge for TTMs Stage 4 |  | 18d | 2012-10-03 A | 2012-10-24 A | 8200TBC430a10 SS, 8200TBC430a, 8200TBC4300a | 100% |  |  |  | Cal 1 | Other Skill Labour (Civil) [864 h] |  | CC C | TBM630 | DT | 1 | 820 | C | 820_AB |  |  |  | 32mL | 1 |  |  |  | 2010 | TUNS | DT | C090 | EPIW | DJa |  |
| 8200TBC430b20 |  | Convergence Zone Grouting Wk@ Ch140+361 to Ch140+380 (Zones E) |  | 88d | 2012-10-29 A | 2012-12-15 A | 8200TBC430d0 | 100% | 2012-10-03 | 2013-01-17 |  | Cal 1 | Drilling Rig [88 h]; Other Skill Labour (Civil) [4224 h] |  | CC C | TBM630 | DT |  |  | C | 820_AB |  |  |  |  | 2 |  |  | INg |  |  |  |  |  | DJa | TBM |
| 8200TBC430a10 |  | Reinstatement@ Ch140+330 to Ch140+342 (Zone B) |  | 24d | 2012-12-03 A | 2012-12-29 A | 8200TBC430, 8200TBC428d20, 8200TBC4300a, 8200TBC430a | 100% | 2012-12-03 | 2013-01-02 |  | Cal 1 | Other Skill Labour (Civil) [1152 h] |  | CC C | TBM630 | DT |  |  | C | 820_AB |  |  |  |  | 2 |  |  | INg |  |  |  |  |  | DJa | TBM |
| 8200TBC425a |  | Reinstatement @ Charming Garden Blk.9 |  | 32d | 2013-01-07 A | 2013-02-05 A | 8200TBC425, 8200TBC423, 8200CPC934 FF, 8200CPC934 | 100% | 2013-01-09 | 2013-02-18 |  | Cal 1 | Other Skill Labour (Civil) [1536 h] |  | CC C | TBM630 | DT | 1 | 820 | C | 820_AB |  |  |  | 37mL | 1 |  |  |  | 2010 | TUNS | DT | C090 | EPIW | DJa |  |
| 8200TBC430g |  | Reinstatement for Convergence Zone |  | 36d | 2013-02-01 A | 2014-01-10 A | 8200TBC430e10, 8200TBC430d, 8200TBC430e, 8200TBC430d0 | 100% | 2013-02-01 | 2013-03-18 |  | Cal 1 | Other Skill Labour (Civil) [1728 h] |  | CC C | TBM630 | DT |  |  | C | 820_AB |  |  |  |  | 2 |  |  | INg |  |  |  |  |  | DJa | TBM |

| ID | WBS | Activity | Type | Duration | Start | Finish | Predecessors | Complete | Planned start | Planned finish | Constraint | Calendar | Resources | 820_As-built | Responsible by | LEVEL 1 | LEVEL 2 | LEVEL 3 | SUMMARY | Contracts | Cost Centre | Classify | Priority A | Responsible (bm makes Global) |
| --- | --- | --- | --- | --- | --- | --- | --- | --- | --- | --- | --- | --- | --- | --- | --- | --- | --- | --- | --- | --- | --- | --- | --- | --- |
|  | 1 | **Tai Kok Tsui Grouting Works** |  |  | 2012-01-16 | 2012-10-31 |  |  |  |  |  |  |  |  |  |  |  |  |  |  |  |  |  |  |
|  | 1 | **Zone 1** |  |  | 2012-02-10 | 2012-09-13 |  |  |  |  |  |  |  |  |  |  |  |  |  |  |  |  |  |  |
| 8200TBC1253 |  | TKT Zone 1 - TGLA granted | milestone | 0d | 2012-02-10 A | 2012-02-10 A | 8200KD1020 FS+639d | 100% |  |  |  |  |  | 820_AB |  |  |  |  |  |  |  |  |  |  |
| 8200TBC1256 |  | TKT Zone 1 - Access Date of works area | milestone | 0d | 2012-02-11 A | 2012-02-11 A | 8200TBC1253 FS+1d | 100% |  |  |  |  |  | 820_AB |  |  |  |  |  |  |  |  |  |  |
| 8200TBC1258 |  | TKT Zone 1 - Trial Pit |  | 6d | 2012-02-13 A | 2012-02-18 A | 8200TBC1256 FS+1d | 100% |  |  |  | Cal 1 | Other Skill Labour (Civil) [288 h] | 820_AB | DJa | CC C | TBM630 | CRIT DA | A | 820 | C |  |  |  |
| 8200TBC1263 |  | TKT Zone 1 - Site Clearance + Tree Transplant |  | 10d | 2012-02-20 A | 2012-03-01 A | 8200TBC1258 | 100% |  |  |  | Cal 1 | Other Skill Labour (Civil) [480 h]; Plant Operator [80 h]; Backhoe [10 h] | 820_AB | DJa | CC C | TBM630 | DT |  |  | C | TBM | 2 | INg |
| 8200TBC1265 |  | TKT Zone 1 - TTMS & Prepare Working platform |  | 21d | 2012-03-02 A | 2012-03-26 A | 8200TBC1263 | 100% |  |  |  | Cal 1 | Plant Operator [336 h]; Roller [21]; Backhoe [21 h]; Other Skill Labour (Civil) [1008 h] | 820_AB | DJa | CC C | TBM630 | DT |  |  | C | TBM | 2 | INg |
| 8200TBC1275 |  | TKT Zone 1 - Install sleeve pipes |  | 12d | 2012-03-27 A | 2012-04-16 A | 8200TBC1265 | 100% |  |  |  | Cal 1 | Other Skill Labour (Civil) [576 h]; Plant Operator [96 h]; Drilling Rig [12 h] | 820_AB | DJa | CC C | TBM630 | DT |  |  | C | TBM | 2 | INg |
| 8200TBC1308 |  | TKT Zone 1 - Ground Treatment Works (TAM grouting) |  | 68d | 2012-04-17 A | 2012-07-16 A | 8200TBC1265, 8200TBC1275 | 100% |  |  |  | Cal 1 | Drilling Rig [136 h]; Other Skill Labour (Civil) [6528 h]; Plant Operator [1088 h] | 820_AB | DJa | CC C | TBM630 | DT |  |  | C | TBM | 2 | INg |
| 8200TBC1318 |  | TKT Zone 1 - Permeability Test |  | 4d | 2012-07-17 A | 2012-07-20 A | 8200y0112 FF, 8200TBC1308 | 100% |  |  |  |  |  | 820_AB | DJa | CC C | TBM630 | CRIT DA | A | 820 | C |  |  |  |
| 8200TBC1818 |  | TKT Zone 1 - TBM Reach Zone 1 | milestone | 0d | 2012-09-13 A | 2012-09-13 A | 8200TBC1318 | 100% | 2012-08-31 | 2012-08-31 | start on 2012-07-25 |  |  | 820_AB |  |  |  |  |  |  |  |  |  |  |
|  | 2 | **Zone 2** |  |  | 2012-01-16 | 2012-09-28 |  |  |  |  |  |  |  |  |  |  |  |  |  |  |  |  |  |  |
| 8200TBC1323 |  | TKT Zone 2 - TTMS (Part 1) |  | 1d | 2012-01-16 A | 2012-01-16 A | 8200KD1020 FS+520d | 100% |  |  |  | Cal 1 | Other Skill Labour (Civil) [48 h] | 820_AB | DJa | CC C | TBM630 | CRIT DA | A | 820 | C |  |  |  |
| 8200TBC1328 |  | TKT Zone 2 - Trial pit |  | 20d | 2012-01-17 A | 2012-02-11 A | 8200TBC1323 | 100% |  |  |  | Cal 1 | Other Skill Labour (Civil) [960 h] | 820_AB | DJa | CC C | TBM630 | CRIT DA | A | 820 | C |  |  |  |
| 8200TBC1518 |  | TKT Zone 2 - Site preparation works |  | 6d | 2012-02-13 A | 2012-02-18 A | 8200TBC1328 | 100% |  |  |  | Cal 1 | Other Skill Labour (Civil) [288 h] | 820_AB | DJa | CC C | TBM630 | CRIT DA | A | 820 | C |  |  |  |
| 8200TBC1528 |  | TKT Zone 2 - Install sleeve pipes (Part 1) |  | 8d | 2012-02-20 A | 2012-02-28 A | 8200TBC1518 | 100% |  |  |  | Cal 1 | Other Skill Labour (Civil) [384 h]; Plant Operator [64 h]; Drilling Rig [8 h] | 820_AB | DJa | CC C | TBM630 | DT |  |  | C | TBM | 2 | INg |
| 8200TBC1538 |  | TKT Zone 2 - TTMS (Part 2) |  | 12d | 2012-02-29 A | 2012-03-13 A | 8200TBC1528 | 100% |  |  |  | Cal 1 | Other Skill Labour (Civil) [576 h] | 820_AB | DJa | CC C | TBM630 | DT |  |  | C | TBM | 2 | INg |
| 8200TBC1548 |  | TKT Zone 2 - Trial pit (Part 2) |  | 10d | 2012-03-14 A | 2012-03-24 A | 8200TBC1538 | 100% |  |  |  | Cal 1 | Other Skill Labour (Civil) [480 h] | 820_AB | DJa | CC C | TBM630 | CRIT DA | A | 820 | C |  |  |  |
| 8200TBC1558 |  | TKT Zone 2 - Site preparation works |  | 4d | 2012-03-26 A | 2012-03-29 A | 8200TBC1548 | 100% |  |  |  | Cal 1 | Other Skill Labour (Civil) [192 h] | 820_AB | DJa | CC C | TBM630 | CRIT DA | A | 820 | C |  |  |  |
| 8200TBC1568 |  | TKT Zone 2 - Install sleeve pipes (Part 2) |  | 7d | 2012-03-30 A | 2012-04-13 A | 8200TBC1558 | 100% |  |  |  | Cal 1 | Other Skill Labour (Civil) [336 h]; Drilling Rig [7 h]; Plant Operator [56 h] | 820_AB | DJa | CC C | TBM630 | CRIT DA | A | 820 | C |  |  |  |
| 8200TBC1578 |  | TKT Zone 2 - Ground Treatment Works (TAM grouting) (Part 2) |  | 33d | 2012-04-14 A | 2012-05-28 A | 8200TBC1568 | 100% |  |  |  | Cal 1 | Plant Operator [264 h]; Other Skill Labour (Civil) [1584 h]; Drilling Rig [33 h] | 820_AB | DJa | CC C | TBM630 | CRIT DA | A | 820 | C |  |  |  |
| 8200TBC1588 |  | TKT Zone 2 - Re-arrange TTMS (Part 1) |  | 9d | 2012-05-29 A | 2012-06-07 A | 8200TBC1578 | 100% |  |  |  | Cal 1 | Other Skill Labour (Civil) [432 h] | 820_AB | DJa | CC C | TBM630 | DT |  |  | C | TBM | 2 | INg |
| 8200TBC1628 |  | TKT Zone 2 - Ground Treatment Works (TAM grouting) (Part 1) |  | 52d | 2012-06-09 A | 2012-08-15 A | 8200TBC1588 | 100% |  |  |  | Cal 1 | Plant Operator [416 h]; Other Skill Labour (Civil) [2496 h]; Drilling Rig [52 h] | 820_AB | DJa | CC C | TBM630 | CRIT DA | A | 820 | C |  |  |  |
| 8200TBC1638 |  | TKT Zone 2 - Permeability Test |  | 5d | 2012-08-16 A | 2012-08-20 A | 8200y0760 FF, 8200TBC1628 | 100% |  |  |  |  |  | 820_AB | DJa | CC C | TBM630 | CRIT DA | A | 820 | C |  |  |  |
| 8200TBC1648 |  | TKT Zone 2 - Temporary reinstatement |  | 8d | 2012-08-21 A | 2012-08-29 A | 8200TBC1638 | 100% |  |  |  | Cal 1 | Roller [8]; Plant Operator [128 h]; Other Skill Labour (Civil) [384 h]; Backhoe [8 h] | 820_AB | DJa | CC C | TBM630 | CRIT DA | A | 820 | C |  |  |  |
| 8200TBC1828 |  | TKT Zone 2 - TBM Reach Zone 2 | milestone | 0d | 2012-09-28 A | 2012-09-28 A | 8200TBC1638 | 100% | 2012-08-31 | 2012-08-31 | mandatory start 2012-08-13 |  |  | 820_AB |  |  |  |  |  |  |  |  |  |  |

| ID | WBS | Activity | Type | Duration | Start | Finish | Predecessors | Complete | Planned start | Planned finish | Constraint | Calendar | Resources | Responsible by | LEVEL 1 | LEVEL 2 | LEVEL 3 | SUMMARY | Contracts | Cost Centre | 820_As-built | Classify | Priority A | Responsible (bm makes Global) | TBM DT s | TBM DT f | Sum1 | Location of Works | Sub-locationof Works | Areas/ Rooms | Phases of Works | Classification of Works | Order | Works Area | QUANTITY |
| --- | --- | --- | --- | --- | --- | --- | --- | --- | --- | --- | --- | --- | --- | --- | --- | --- | --- | --- | --- | --- | --- | --- | --- | --- | --- | --- | --- | --- | --- | --- | --- | --- | --- | --- | --- |
|  | 3 | **Zone 3** |  |  | 2012-01-16 | 2012-10-31 |  |  |  |  |  |  |  |  |  |  |  |  |  |  |  |  |  |  |  |  |  |  |  |  |  |  |  |  |  |
| 8200TBC1658 |  | TKT Zone 3 - TTMS (Part 1) |  | 1d | 2012-01-16 A | 2012-01-16 A | 8200KD1020 FS+520d | 100% |  |  |  | Cal 1 | Other Skill Labour (Civil) [48 h] | DJa | CC C | TBM630 | CRIT DA | A | 820 | C | 820_AB |  |  |  |  |  |  |  |  |  |  |  |  |  |  |
| 8200TBC1668 |  | TKT Zone 3 - Trial pit + grout pattern design |  | 18d | 2012-01-17 A | 2012-02-09 A | 8200TBC1658 | 100% |  |  |  | Cal 1 | Other Skill Labour (Civil) [864 h] | DJa | CC C | TBM630 | CRIT DA | A | 820 | C | 820_AB |  |  |  |  |  |  |  |  |  |  |  |  |  |  |
| 8200TBC1678 |  | TKT Zone 3 - Install sleeve pipes (Part 1) |  | 8d | 2012-02-10 A | 2012-02-18 A | 8200TBC1668 | 100% |  |  |  | Cal 1 | Plant Operator [64 h]; Other Skill Labour (Civil) [384 h]; Drilling Rig [8 h] | DJa | CC C | TBM630 | CRIT DA | A | 820 | C | 820_AB |  |  |  |  |  |  |  |  |  |  |  |  |  |  |
| 8200TBC1688 |  | TKT Zone 3 - TTMS (Part 2) + site preparation + Install sleeve pipes (Part 2) |  | 26d | 2012-02-20 A | 2012-03-20 A | 8200TBC1678 | 100% |  |  |  | Cal 1 | Other Skill Labour (Civil) [1248 h]; Plant Operator [416 h]; Backhoe [26 h]; Drilling Rig [26 h] | DJa | CC C | TBM630 | DT |  |  | C | 820_AB | TBM | 2 | INg |  |  |  |  |  |  |  |  |  |  |  |
| 8200TBC1698 |  | TKT Zone 3 - Site setup |  | 6d | 2012-03-21 A | 2012-03-27 A | 8200TBC1688 | 100% |  |  |  | Cal 1 | Other Skill Labour (Civil) [384 h] | DJa | CC C | TBM630 | DT |  |  | C | 820_AB | TBM | 2 | INg |  |  |  |  |  |  |  |  |  |  |  |
| 8200TBC1708 |  | TKT Zone 3 - Drilling for Ground treatment works |  | 21d | 2012-03-28 A | 2012-04-30 A | 8200TBC1698 | 100% |  |  |  | Cal 1 | Other Skill Labour (Civil) [1296 h]; Plant Operator [216 h]; Drilling Rig [27 h] | DJa | CC C | TBM630 | DT |  |  | C | 820_AB | TBM | 2 | INg |  |  |  |  |  |  |  |  |  |  |  |
| 8200TBC1718 |  | TKT Zone 3 - Further soil investigation to review ground treatment requirement |  | 12d | 2012-04-14 A | 2012-04-30 A | 8200TBC1708 SS+9d | 100% |  |  |  | Cal 1 | Other Skill Labour (Civil) [1296 h]; Plant Operator [216 h]; Drilling Rig [27 h] | DJa | CC C | TBM630 | DT |  |  | C | 820_AB | TBM | 2 | INg |  |  |  |  |  |  |  |  |  |  |  |
| 8200TBC1728 |  | TKT Zone 3 - Decision to confirm ground treatment requirement | milestone | 0d | 2012-04-30 A | 2012-04-30 A | 8200TBC1718 | 100% |  |  |  | Cal 1 |  | DJa | CC C | TBM630 | DT |  |  | C | 820_AB | TBM | 2 | INg |  |  |  |  |  |  |  |  |  |  |  |
| 8200TBC1838 |  | TKT Zone 3 - TBM Reach Zone 3 | milestone | 0d | 2012-10-31 A | 2012-10-31 A | 8200TBC1728 | 100% | 2012-11-30 | 2012-11-30 | start on 2012-08-31 |  |  |  |  |  |  |  |  |  | 820_AB |  |  |  |  |  |  |  |  |  |  |  |  |  |  |
|  | 1 | **TBM Excavation (South-DT)** |  |  | 2011-11-13 | 2014-05-03 |  |  |  |  |  |  |  |  |  |  |  |  |  |  |  |  |  |  |  |  |  |  |  |  |  |  |  |  |  |
| 8200TBC511 |  | Piles Removal@CLP Equipment Bldg.& Footbridges KF-119 by 805 | milestone | 0d | 2011-11-13 A | 2011-11-13 A | 8200PD7020 FF | 100% | 2012-01-15 | 2012-01-15 |  |  |  | DJa | CC C | TBM630 | DT | A | 820 | C | 820_AB |  |  | DJa | 2012-05-07 | 2012-05-07 | S2 | 2030 | TUNS | DT | C090 | EPIW |  |  |  |
| 8200TBC461 |  | Obstructions Removal Below Nam Cheong Property/802 (11Dec2011-Contract) | milestone | 0d | 2011-12-11 A | 2011-12-11 A |  | 100% | 2012-01-15 | 2012-01-15 | finish on or after 2011-12-11 |  |  | DJa | CC C | TBM630 | DT | TBM | 820 | C | 820_AB |  |  | DJa |  |  |  | 2010 | TUNS | DT | C090 | EPIW |  |  |  |
| 8200TBC431 |  | TBM (S630-1) Delivery on Site | milestone | 0d | 2012-01-04 A | 2012-01-04 A | 8200PMB200, 8200TBC738 FF | 100% | 2012-01-15 | 2012-01-15 |  |  |  | DJa | CC E | TBM630 | DT | VB & CC | 820 | C | 820_AB | A |  |  |  |  | S2 | 2020 |  |  | C050 | EPIW | 7 | 11.26A |  |
| 8200TBC432a |  | TBM (S630-1) Assembly, and T&C |  | 76d | 2012-01-05 A | 2012-04-04 A | 8200CCE279a10, 8200TBC431, 8200CCE242c10 FS-6d, 8200TBC739 SS+61d, 8200PMB190, 8200PMB200 | 100% | 2012-03-16 | 2012-05-30 |  |  | TBM Maintenance Crew [12160 h]; Other Skill Labour (Civil) [3648 h]; Plant Operator [1216 h]; Mobile Crane [152 h] | DJa | CC E | TBM630 | DT | VB & CC | 820 | C | 820_AB | A |  |  |  |  | S2 | 2020 |  |  | C050 | EPIW | 8 | 11.26A |  |
| 8200TBC432b |  | D/T TBM (S630-1) Break-in & Excavation Ch137+941-137+967 |  | 9d | 2012-04-12 A | 2012-04-23 A | 8200C0A420, 8200TBC432a, 8200C0A310 FF | 100% | 2012-03-21 | 2012-03-29 |  | Cal 5 | TBM Excavation [1773.72 m3]; TBM Maintenance Crew [1728 h]; TBM Operational Crew [4608 h]; TBM [12 h] | DJa | CC C | TBM630 | DT |  |  | C | 820_AB | A |  | DJa |  |  |  |  |  |  |  |  |  |  | 26m |
| 8200TBC435 |  | Reach Rising Main & FMO Pier A Obstruction | milestone | 0d | 2012-04-23 A | 2012-04-23 A | 8200TBC432b, 8200CCG630 | 100% | 2012-03-29 | 2012-03-29 |  | Cal 5 |  | DJa | CC C | TBM630 | DT | TBM | 820 | C | 820_AB | A |  | DJa |  |  |  | 2010 | TUNS | DT | C090 | EPIW |  |  |  |
| 8200TBC440 |  | D/T Excavation Ch137+967-138+025 |  | 20d | 2012-04-30 A | 2012-05-07 A | 8200TBC435, 8200CCG640 | 100% | 2012-03-30 | 2012-04-18 |  | Cal 5 | TBM Excavation [3957 m3]; TBM Maintenance Crew [3888 h]; TBM Operational Crew [10368 h]; TBM [27 h] | DJa | CC C | TBM630 | DT | 1 | 820 | C | 820_AB | A |  | DJa |  |  |  | 2010 | TUNS | DT | C090 | EPIW |  |  | 58m |
| 8200TBC461a |  | Unobstructed Passage Available (30April2012) | milestone | 0d | 2012-04-30 A | 2012-04-30 A |  | 100% |  |  | start on 2012-04-30 |  |  | DJa | CC C | TBM630 | DT | TBM | 820 | C | 820_AB |  |  | DJa |  |  |  | 2010 | TUNS | DT | C090 | EPIW |  |  |  |
| 8200TBC463 |  | Obstructions Removal Below Nam Cheong Property by 802 (30Apr12) | milestone | 0d | 2012-04-30 A | 2012-04-30 A | 8200TBC461a | 100% |  |  | finish on or after 2012-04-30 |  |  | DJa | CC C | TBM630 | DT | TBM | 820 | C | 820_AB |  |  | DJa |  |  |  | 2010 | TUNS | DT | C090 | EPIW |  |  |  |
| 8200TBC445 |  | D/T Excavation Ch138+025-138+043 |  | 2d | 2012-05-08 A | 2012-05-10 A | 8200TBC440 | 100% | 2012-04-19 | 2012-04-20 |  | Cal 4 | TBM Excavation [1228 m3]; TBM Maintenance Crew [576 h]; TBM Operational Crew [1536 h]; TBM [4 h] | DJa | CC C | TBM630 | DT | 1 | 820 | C | 820_AB | A |  | DJa |  |  |  | 2010 | TUNS | DT | C090 | EPIW |  |  | 18m |
| 8200TBC450 |  | Reach FMO Pier B Pile Obstruction Ch138+043 | milestone | 0d | 2012-05-10 A | 2012-05-10 A | 8200CCF780, 8200TBC445 | 100% | 2012-04-20 | 2012-04-20 |  | Cal 4 |  | DJa | CC C | TBM630 | DT | 1 | 820 | C | 820_AB | A |  | DJa |  |  |  | 2010 | TUNS | DT | C090 | EPIW |  |  |  |
| 8200TBC455 |  | D/T Excavation Ch138+043-138+109 |  | 7d | 2012-05-11 A | 2012-05-27 A | 8200TBC450 | 100% | 2012-04-21 | 2012-04-27 |  | Cal 4 | TBM Excavation [4503 m3]; TBM Maintenance Crew [2016 h]; TBM Operational Crew [5376 h]; TBM [14 h] | DJa | CC C | TBM630 | DT | 1 | 820 | C | 820_AB | A |  | DJa |  |  |  | 2010 | TUNS | DT | C090 | EPIW |  |  | 66m |
| 8200TBC455z |  | Reach CP89 (CH138+055) | milestone | 0d | 2012-05-14 A | 2012-05-14 A | 8200TBC455 SF+1d, 8200TBC455 FF-6d, 8200CPC357 | 100% | 2012-04-22 | 2012-04-22 |  |  |  | DJa | CC C | TBM630 | DT |  |  | C | 820_AB | C1 |  | DJa |  |  |  |  |  |  |  |  |  |  | 668m=45571m3 |
| 8200TBC460 |  | D/T Excavation Ch138+109-138+149 |  | 3d | 2012-06-04 A | 2012-06-11 A | 8200TBC455, 8200TBC455z | 100% | 2012-04-28 | 2012-04-30 |  | Cal 4 | TBM Excavation [2729 m3]; TBM Maintenance Crew [576 h]; TBM Operational Crew [1536 h]; TBM [4 h] | DJa | CC C | TBM630 | DT | 1 | 820 | C | 820_AB | A |  | DJa |  |  |  | 2010 | TUNS | DT | C090 | EPIW |  |  | 40m |
| 8200TBC462 |  | Reach Nam Cheong Property Development (Pile removed by 802) | milestone | 0d | 2012-06-09 A | 2012-06-09 A | 8200TBC460 | 100% | 2012-04-30 | 2012-04-30 |  | Cal 4 |  | DJa | CC C | TBM630 | DT |  |  | C | 820_AB | A |  | DJa |  |  |  |  |  |  |  |  |  |  |  |
| 8200TBC464 |  | D/T Excavation Ch138+149-Ch138+170 |  | 2d | 2012-06-10 A | 2012-06-12 A | 8200TBC461a, 8200TBC461, 8200TBC460, 8200PD7010, 8200TBC463, 8200TBC462 | 100% | 2012-05-01 | 2012-05-02 |  | Cal 4 | TBM Excavation [1433 m3]; TBM Maintenance Crew [288 h]; TBM Operational Crew [768 h]; TBM [2 h] | DJa | CC C | TBM630 | DT |  |  | C | 820_AB | A |  | DJa |  |  |  |  |  |  |  |  |  |  | 21m |
| 8200TBC470 |  | D/T Excavation Ch138+170-138+420 |  | 27d | 2012-06-13 A | 2012-07-04 A | 8200TBC464 | 100% | 2012-05-03 | 2012-05-29 |  | Cal 4 | TBM Excavation [17055 m3]; TBM Maintenance Crew [4032 h]; TBM Operational Crew [10752 h]; TBM [28 h] | DJa | CC C | TBM630 | DT | 1 | 820 | C | 820_AB | A |  | DJa |  |  |  | 2010 | TUNS | DT | C090 | EPIW |  |  | 250m |
| 8200TBC470z |  | Reach CP90 (CH138+315) | milestone | 0d | 2012-06-28 A | 2012-06-28 A | 8200TBC470 SF+16d, 8200CPC415, 8200TBC470 FF-11d | 100% | 2012-05-19 | 2012-05-19 |  |  |  | DJa | CC C | TBM630 | DT |  |  | C | 820_AB | C1 |  | DJa |  |  |  |  |  |  |  |  |  |  | 668m=45571m3 |
| 8200TBC475 |  | D/T Excavation Ch138+420-138+457 |  | 3d | 2012-07-05 A | 2012-07-06 A | 8200TBC470, 8200TBC470z | 100% | 2012-05-30 | 2012-06-01 |  | Cal 5 | TBM Excavation [2524 m3]; TBM Maintenance Crew [576 h]; TBM Operational Crew [1536 h]; TBM [4 h] | DJa | CC C | TBM630 | DT | 1 | 820 | C | 820_AB | A |  | DJa |  |  |  | 2010 | TUNS | DT | C090 | EPIW |  |  | 37m |
| 8200TBC480 |  | Reach Shum Shui Po Pier Pile Obstruction Ch138+457 | milestone | 0d | 2012-07-06 A | 2012-07-06 A | 8200TBC475 | 100% | 2012-06-01 | 2012-06-01 |  | Cal 4 |  | DJa | CC C | TBM630 | DT | 1 | 820 | C | 820_AB | A |  | DJa |  |  |  | 2010 | TUNS | DT | C090 | EPIW |  |  |  |
| 8200TBC485 |  | D/T Excavation Ch138+457-138+480 |  | 2d | 2012-07-07 A | 2012-07-08 A | 8200TBC480, 8200CCF830d6, 8200TBC475, 8200CCF830d7 | 100% | 2012-06-02 | 2012-06-03 |  | Cal 5 | TBM Excavation [1569 m3]; TBM Maintenance Crew [432 h]; TBM Operational Crew [1152 h]; TBM [3 h] | DJa | CC C | TBM630 | DT | 1 | 820 | C | 820_AB | A |  | DJa |  |  |  | 2010 | TUNS | DT | C090 | EPIW |  |  | 23m |
| 8200TBC490 |  | D/T Excavation Ch138+480-138+590 |  | 9d | 2012-07-09 A | 2012-07-27 A | 8200TBC485 | 100% | 2012-06-04 | 2012-06-12 |  | Cal 5 | TBM Excavation [7504 m3]; TBM Maintenance Crew [1872 h]; TBM Operational Crew [4992 h]; TBM [13 h] | DJa | CC C | TBM630 | DT | 1 | 820 | C | 820_AB | A |  | DJa |  |  |  | 2010 | TUNS | DT | C090 | EPIW |  |  | 110m |
| 8200TBC490z |  | Reach CP91 (CH138+521) | milestone | 0d | 2012-07-13 A | 2012-07-13 A | 8200CPC505, 8200TBC490 FF-6d, 8200TBC490 SF+3d | 100% | 2012-06-07 | 2012-06-07 |  |  |  | DJa | CC C | TBM630 | DT |  |  | C | 820_AB | C1 |  | DJa |  |  |  |  |  |  |  |  |  |  | 668m=45571m3 |
| 8200TBC495 |  | Reach YC2 Culvert Pile Obstruction Ch138+590 | milestone | 0d | 2012-07-27 A | 2012-07-27 A | 8200TBC490 | 100% | 2012-06-12 | 2012-06-12 |  | Cal 4 |  | DJa | CC C | TBM630 | DT | 1 | 820 | C | 820_AB | A |  | DJa |  |  |  | 2010 | TUNS | DT | C090 | EPIW |  |  |  |
| 8200TBC500 |  | D/T Excavation Ch138+590-138+771 |  | 15d | 2012-07-28 A | 2012-08-10 A | 8200CCG794, 8200TBC490z, 8200TBC495 | 100% | 2012-06-13 | 2012-06-27 |  | Cal 5 | TBM Excavation [12300 m3]; TBM Maintenance Crew [2816 h]; TBM Operational Crew [7520 h]; TBM [20 h] | DJa | CC C | TBM630 | DT | 1 | 820 | C | 820_AB | A |  | DJa |  |  |  | 2010 | TUNS | DT | C090 | EPIW |  |  | 360m |
| 8200TBC500z |  | Reach CP92 (CH138+771) | milestone | 0d | 2012-08-10 A | 2012-08-10 A | 8200TBC500, 8200CPC580 | 100% | 2012-06-27 | 2012-06-27 |  |  |  | DJa | CC C | TBM630 | DT |  |  | C | 820_AB | C1 |  | DJa |  |  |  |  |  |  |  |  |  |  | 668m=45571m3 |
| 8200TBC501a |  | D/T Excavation Ch138+771-138+950 |  | 13d | 2012-08-11 A | 2012-08-25 A | 8200TBC500z | 100% | 2012-06-28 | 2012-07-10 |  | Cal 5 | TBM [19 h]; TBM Excavation [12299 m3]; TBM Maintenance Crew [2800 h]; TBM Operational Crew [7456 h] | DJa | CC C | TBM630 | DT | 1 | 820 | C | 820_AB | A |  | DJa |  |  |  | 2010 | TUNS | DT | C090 | EPIW |  |  | 360m |
| 8200TBC505 |  | Reach NC1 Culvert Pile Obstruction Ch138+950 | milestone | 0d | 2012-08-25 A | 2012-08-25 A | 8200TBC501a, 8200TBC500z, 8200TBC500 | 100% | 2012-07-10 | 2012-07-10 |  | Cal 4 |  | DJa | CC C | TBM630 | DT | 1 | 820 | C | 820_AB | A |  | DJa |  |  |  | 2010 | TUNS | DT | C090 | EPIW |  |  |  |
| 8200TBC510 |  | D/T Excavation Ch138+950-139+044 |  | 7d | 2012-08-26 A | 2012-09-02 A | 8200CCG813, 8200TBC505 | 100% | 2012-07-11 | 2012-07-17 |  | Cal 5 | TBM Excavation [6413 m3]; TBM Maintenance Crew [1440 h]; TBM Operational Crew [3840 h]; TBM [11 h] | DJa | CC C | TBM630 | DT | 1 | 820 | C | 820_AB | A |  | DJa |  |  |  | 2010 | TUNS | DT | C090 | EPIW |  |  | 94m |
| 8200TBC510z |  | Reach CP93 (CH138+996) | milestone | 0d | 2012-08-28 A | 2012-08-28 A | 8200CPC665, 8200TBC510 FF-4d, 8200TBC510 SF+3d | 100% | 2012-07-14 | 2012-07-14 |  |  |  | DJa | CC C | TBM630 | DT |  |  | C | 820_AB | C1 |  | DJa |  |  |  |  |  |  |  |  |  |  | 668m=45571m3 |
| 8200TBC512 |  | Reach Footbridge KF119 (Pile removed by 805) | milestone | 0d | 2012-09-03 A | 2012-09-03 A | 8200TBC510 | 100% | 2012-08-31 | 2012-08-31 |  | Cal 5 |  | DJa | CC C | TBM630 | DT |  |  | C | 820_AB | A |  | DJa |  |  |  |  |  |  |  |  |  |  |  |
| 8200TBC514 |  | D/T Excavation Ch139+044-139+100 |  | 6d | 2012-09-04 A | 2012-09-10 A | 8200TBC510z, 8200TBC512, 8200TBC511 | 100% | 2012-08-31 | 2012-09-05 |  | Cal 5 | TBM Excavation [3820 m3]; TBM Maintenance Crew [432 h]; TBM Operational Crew [1152 h]; TBM [3 h] | DJa | CC C | TBM630 | DT |  |  | C | 820_AB | A |  | DJa |  |  |  |  |  |  |  |  |  |  | 56m |
| 8200TBC515 |  | D/T Excavation Ch139+100-139+120 |  | 4d | 2012-09-10 A | 2012-09-17 A | 8200TBC514 | 100% | 2012-09-06 | 2012-09-09 |  | Cal 5 | TBM Excavation [1364 m3]; TBM Maintenance Crew [576 h]; TBM Operational Crew [1536 h]; TBM [4 h] | DJa | CC C | TBM630 | DT | 1 | 820 | C | 820_AB | A |  | DJa |  |  |  | 2010 | TUNS | DT | C090 | EPIW |  |  | 20m |
| 8200TBC520 |  | D/T Excavation Ch139+120-139+350 |  | 59d | 2012-09-18 A | 2012-10-30 A | 8200TBC515 | 100% | 2012-09-10 | 2012-11-07 |  | Cal 5 | TBM Excavation [15691 m3]; TBM Maintenance Crew [8784 h]; TBM Operational Crew [23424 h]; TBM [61 h] | DJa | CC C | TBM630 | DT | 1 | 820 | C | 820_AB | A |  | DJa |  |  |  | 2010 | TUNS | DT | C090 | EPIW |  |  | 230m |
| 8200TBC520z |  | Reach CP94(CH139+265) | milestone | 0d | 2012-10-12 A | 2012-10-12 A | 8200TBC520 FF-22d, 8200TBC520 SF+37d | 100% | 2012-10-24 | 2012-10-24 |  |  |  | DJa | CC C | TBM630 | DT |  |  | C | 820_AB | C1 |  | DJa |  |  |  |  |  |  |  |  |  |  | 668m=45571m3 |
| 8200TBC525 |  | D/T Excavation Ch139+350-139+450 |  | 14d | 2012-10-31 A | 2012-11-16 A | 8200TBC520, 8200TBC520z | 100% | 2012-11-15 | 2012-11-28 |  | Cal 7 | TBM Excavation [6822 m3]; TBM Maintenance Crew [2304 h]; TBM Operational Crew [6144 h]; TBM [16 h] | DJa | CC C | TBM630 | DT | 1 | 820 | C | 820_AB | A |  | DJa |  |  |  | 2010 | TUNS | DT | C090 | EPIW |  |  | 100m |
| 8200TBC530 |  | D/T Excavation Ch139+450-139+825 |  | 33d | 2012-11-17 A | 2013-01-20 A | 8200TBC525, 8200TBC427 | 100% | 2012-11-13 | 2012-12-15 |  | Cal 7 | TBM Excavation [25583 m3]; TBM Maintenance Crew [5472 h]; TBM Operational Crew [14592 h]; TBM [38 h] | DJa | CC C | TBM630 | DT | 1 | 820 | C | 820_AB | A |  | DJa |  |  |  | 2010 | TUNS | DT | C090 | EPIW |  |  | 375m |
| 8200TBC530z1 |  | Reach CP95(CH139+504) | milestone | 0d | 2012-11-26 A | 2012-11-26 A | 8200TBC530 SF+5d, 8200TBC530 FF-28d | 100% | 2012-11-18 | 2012-11-18 |  |  |  | DJa | CC C | TBM630 | DT |  |  | C | 820_AB | C1 |  | DJa |  |  |  |  |  |  |  |  |  |  | 668m=45571m3 |
| 8200TBC530z2 |  | Reach CP96(CH139+711) | milestone | 0d | 2012-12-28 A | 2012-12-28 A | 8200TBC530 SF+23d, 8200TBC530 FF-10d | 100% |  |  |  |  |  | DJa | CC C | TBM630 | DT |  |  | C | 820_AB | C1 |  | DJa |  |  |  |  |  |  |  |  |  |  | 668m=45571m3 |
| 8200TBC535 |  | D/T Excavation Ch139+825-139+872 |  | 10d | 2013-01-20 A | 2013-08-15 A | 8200TBC530z1, 8200TBC530z2, 8200TBC530 | 100% | 2013-01-21 | 2013-01-30 |  | Cal 5 | TBM Excavation [3070 m3]; TBM Maintenance Crew [1440 h]; TBM Operational Crew [3840 h]; TBM [10 h] | DJa | CC C | TBM630 | DT | 1 | 820 | C | 820_AB | A |  | DJa |  |  |  | 2010 | TUNS | DT | C090 | EPIW |  |  | 45m |
| 8200TBC536 |  | **HWR H-pile Obstruction Removal |  | 206d | 2013-01-22 A | 2013-08-15 A | 8200TBC535 SS | 100% |  |  | mandatory start 2013-01-22 | Cal 5 | TBM Excavation [3070 m3]; TBM Maintenance Crew [1440 h]; TBM Operational Crew [3840 h]; TBM [73 h] | DJa | CC C | TBM630 | DT | 1 | 820 | C | 820_AB | A |  | DJa |  |  |  | 2010 | TUNS | DT | C090 | EPIW |  |  | 45m |
| 8200TBC566 |  | Advance Noice to Contract 811A for Set Up of TBM Retrieval (60d) | milestone | 0d | 2013-08-01 A | 2013-08-01 A |  | 100% |  |  | as late as possible |  |  | DJa | CC C | TBM630 | DT |  |  | C | 820_AB |  |  | DJa |  |  |  |  |  |  |  |  |  |  |  |
| 8200TBC1878 |  | D/T Excavation Ch139+872-139+875 |  | 3d | 2013-08-15 A | 2013-08-16 A | 8200TBC536 | 100% | 2013-08-15 | 2013-08-17 |  | Cal 5 | TBM Maintenance Crew [720 h]; TBM Operational Crew [1920 h]; TBM Excavation [3411 m3]; TBM [40 h] | DJa | CC C | TBM630 | DT | 1 | 820 | C | 820_AB | A |  | DJa |  |  |  | 2010 | TUNS | DT | C090 | EPIW |  |  | 50m |
| 8200TBC1888 |  | TBM resume at Ch139+875 | milestone | 0d | 2013-08-16 A | 2013-08-16 A | 8200TBC1878 | 100% |  |  |  | Cal 5 |  | DJa | CC C | TBM630 | DT | 1 | 820 | C | 820_AB | A |  | DJa |  |  |  | 2010 | TUNS | DT | C090 | EPIW |  |  | 50m |
| 8200TBC540 |  | D/T Excavation Ch139+875 -139+920 |  | 4d | 2013-08-16 A | 2013-08-24 A | 8200TBC536, 8200TBC1878, 8200TBC1888 | 100% | 2013-08-16 | 2013-08-19 |  | Cal 5 | TBM Maintenance Crew [720 h]; TBM Operational Crew [1920 h]; TBM [40 h]; TBM Excavation [3411 m3] | DJa | CC C | TBM630 | DT | 1 | 820 | C | 820_AB | A |  | DJa |  |  |  | 2010 | TUNS | DT | C090 | EPIW |  |  | 50m |
| 8200TBC562 |  | Advance Noice to Contract 811A for TBM Break In (30d) | milestone | 0d | 2013-08-16 A | 2013-08-16 A |  | 100% |  |  | as late as possible |  |  | DJa | CC C | TBM630 | DT |  |  | C | 820_AB |  |  | DJa |  |  |  |  |  |  |  |  |  |  |  |
| 8200TBC545 |  | D/T Excavation Ch139+920-139+950 |  | 2d | 2013-08-24 A | 2013-08-26 A | 8200TBC540 | 100% | 2013-08-24 | 2013-08-25 |  | Cal 4 | TBM Excavation [2047 m3]; TBM Maintenance Crew [288 h]; TBM Operational Crew [768 h]; TBM [16 h] | DJa | CC C | TBM630 | DT | 1 | 820 | C | 820_AB | A |  | DJa |  |  |  | 2010 | TUNS | DT | C090 | EPIW |  |  | 30m |
| 8200TBC550 |  | D/T Excavation Ch139+950-140+010 |  | 4d | 2013-08-26 A | 2013-08-31 A | 8200TBC545 | 100% | 2013-08-26 | 2013-08-29 |  | Cal 4 | TBM Excavation [4093 m3]; TBM Operational Crew [1536 h]; TBM [32 h]; TBM Maintenance Crew [576 h] | DJa | CC C | TBM630 | DT | 1 | 820 | C | 820_AB | A |  | DJa |  |  |  | 2010 | TUNS | DT | C090 | EPIW |  |  | 60m |
| 8200TBC568 |  | D/T Preparation Works inside Exit Shaft 811A |  | 34d | 2013-08-26 A | 2013-09-21 A | 8200TBC566 FS+60d, 8200TBC565 FF | 100% | 2013-08-26 | 2013-09-28 |  |  |  | DJa | CC C | TBM630 | DT |  |  | C | 820_AB |  |  | DJa |  |  |  |  |  |  |  |  |  |  |  |
| 8200TBC550z |  | Reach CP97 (CH139+961) | milestone | 0d | 2013-08-26 A | 2013-08-26 A | 8200CPC903, 8200TBC550 FF-3d, 8200TBC550 SF+1d | 100% |  |  |  |  |  | DJa | CC C | TBM630 | DT |  |  | C | 820_AB | C1 |  | DJa |  |  |  |  |  |  |  |  |  |  | 668m=45571m3 |
| 8200TBC555 |  | D/T Excavation Ch140+010-140+180 |  | 11d | 2013-08-31 A | 2013-09-11 A | 8200TBC550z, 8200TBC413a, 8200TBC4300a FS+21d, 8200TBC415, 8200TBC430a FS+21d, 8200TBC550, 8200TBC430a10 FS+21d, 8200TBC430b FS+21d, 8200TBC413e, 8200TBC413d | 100% | 2013-08-31 | 2013-09-10 |  | Cal 4 | TBM Excavation [11590 m3]; TBM Maintenance Crew [1584 h]; TBM Operational Crew [4224 h]; TBM [88 h] | DJa | CC C | TBM630 | DT | 1 | 820 | C | 820_AB | A |  | DJa |  |  |  | 2010 | TUNS | DT | C090 | EPIW |  |  | 170m |
| 8200TBC555z1 |  | Reach Hoi Fu Court (CH140+063) | milestone | 0d | 2013-09-03 A | 2013-09-03 A | 8200TBC555 SF+5d, 8200TBC555 FF-6d | 100% |  |  |  |  |  | DJa | CC C | TBM630 | DT |  |  | C | 820_AB | C1 |  | DJa |  |  |  |  |  |  |  |  |  |  | 668m=45571m3 |
| 8200TBC555z2 |  | Reach Charming Garden No.8 (CH140+139) | milestone | 0d | 2013-09-08 A | 2013-09-08 A | 8200TBC555 SF+9d, 8200TBC555 FF-2d | 100% |  |  |  |  |  | DJa | CC C | TBM630 | DT |  |  | C | 820_AB | C1 |  | DJa |  |  |  |  |  |  |  |  |  |  | 668m=45571m3 |
| 8200TBC560 |  | D/T Excavation Ch140+180-140+270 |  | 8d | 2013-09-11 A | 2013-09-17 A | 8200TBC555, 8200TBC555z2, 8200TBC413e, 8200TBC425 FF+7d, 8200TBC555z1 | 100% | 2013-09-11 | 2013-09-18 |  | Cal 4 | TBM Excavation [6140 m3]; TBM Maintenance Crew [1152 h]; TBM Operational Crew [3072 h]; TBM [64 h] | DJa | CC C | TBM630 | DT | 1 | 820 | C | 820_AB | A |  | DJa |  |  |  | 2010 | TUNS | DT | C090 | EPIW |  |  | 90m |
| 8200TBC560z1 |  | Reach CP98(CH140+211) | milestone | 0d | 2013-09-13 A | 2013-09-13 A | 8200TBC560 FF-5d, 8200TBC560 SF+3d, 8200CPC934 | 100% |  |  |  |  |  | DJa | CC C | TBM630 | DT |  |  | C | 820_AB | C1 |  | DJa |  |  |  |  |  |  |  |  |  |  | 668m=45571m3 |
| 8200TBC560z2 |  | Reach Charming Garden No.9 (CH140+207) | milestone | 0d | 2013-09-13 A | 2013-09-13 A | 8200TBC560 | 100% |  |  |  |  |  | DJa | CC C | TBM630 | DT |  |  | C | 820_AB | C1 |  | DJa |  |  |  |  |  |  |  |  |  |  | 668m=45571m3 |
| 8200TBC565 |  | D/T Excavation Ch140+270-140+385-Shaft 811A |  | 12d | 2013-09-17 A | 2013-09-24 A | 8200CEC120, 8200TBC560z1, 8200TBC430b10 FS+12d, 8200TBC430d0 FS+12d, 8200TBC430e10, 8200TBC430b20, 8200TBC560, 8200TBC560z2, 8200TBC562 FF+31d | 100% | 2013-09-17 | 2013-09-28 |  | Cal 4 | TBM Excavation [7845 m3]; TBM Maintenance Crew [1728 h]; TBM Operational Crew [4608 h]; TBM [96 h] | DJa | CC C | TBM630 | DT | 1 | 820 | C | 820_AB | A |  | DJa |  |  |  | 2010 | TUNS | DT | C090 | EPIW |  |  | 115m |
| 8200TBC565a1 |  | Exit Convergence Zone (Ch140+287~) | milestone | 0d | 2013-09-18 A | 2013-09-18 A | 8200TBC565 FS-9d | 100% |  |  |  |  |  | DJa | CC C | TBM630 | DT |  |  | C | 820_AB | C1 |  | DJa |  |  |  |  |  |  |  |  |  |  | 668m=45571m3 |
| 8200TBC565a2 |  | D/T exit Box Cleaning for TBM Dismantling |  | 5d | 2013-09-25 A | 2013-09-29 A | 8200y0030 FF, 8200TBC562 FF+30d, 8200TBC560, 8200TBC565, 8200CEC120, 8200TBC565a1 | 100% | 2015-09-25 | 2015-09-29 |  | Cal 4 | TBM Excavation; TBM Maintenance Crew [720 h]; TBM Operational Crew [1920 h]; TBM | DJa | CC C | TBM630 | DT | 1 | 820 | C | 820_AB | A |  | DJa |  |  |  | 2010 | TUNS | DT | C090 | EPIW |  |  |  |

Notes:
- 8200TBC462: Problems Encountered: 11Dec11 Completed by 802
- 8200TBC464: Anticipated Problems: ignore: Obstruction removal below Nam Cheong Property (by / 801) [8200TBC462]
- 8200TBC500: Problems Encountered: link to 8200ccg794 FS (YC2)
- 8200TBC501a: Problems Encountered: link to 8200ccg794 FS (YC2)
- 8200TBC535: Problems Encountered: At / Ch139+842, Steel H-pile Obstruction impact on 22-Jan-13 and obstruction removal finish on / 12-Aug-13.
- 8200TBC536: Problems Encountered: At / Ch139+842, Steel H-pile Obstruction impact on 22-Jan-13 and obstruction removal finish on / 12-Aug-13.

| ID | WBS | Activity | Type | Duration | Start | Finish | Predecessors | Complete | Planned start | Planned finish | Constraint | Calendar | Resources | Responsible by | Classify | LEVEL 1 | LEVEL 2 | LEVEL 3 | SUMMARY | Responsible (bm makes Global) | Contracts | Cost Centre | Location of Works | Sub-locationof Works | Areas/ Rooms | Phases of Works | Classification of Works | 820_As-built | QUANTITY | Production Rate | Priority A | Sum1 | TBM UT f | TBM UT s |
| --- | --- | --- | --- | --- | --- | --- | --- | --- | --- | --- | --- | --- | --- | --- | --- | --- | --- | --- | --- | --- | --- | --- | --- | --- | --- | --- | --- | --- | --- | --- | --- | --- | --- | --- |
| 8200TBC575 |  | TBM (S630-1) Shield Dismantle & Removal |  | 42d | 2013-09-30 A | 2013-11-10 A | 8200TBC565a2 | 100% |  |  |  |  |  | DJa | A | CC C | TBM630 | DT | 1 | DJa | 820 | C | 2010 | TUNS | DT | C090 | EPIW | 820_AB |  |  |  |  |  |  |
| 8200TBC570 |  | TBM (S630-1) Backup pull back |  | 10d | 2013-10-07 A | 2013-10-16 A | 8200TBC568, 8200TBC575 SS+28d | 100% |  |  |  |  |  | DJa |  | CC C | TBM630 | DT | 1 | DJa | 820 | C | 2010 | TUNS | DT | C090 | EPIW | 820_AB | 2W+2W |  |  |  |  |  |
| 8200TBC579a |  | Setup Equipment for Invert & Walkway Construction (Ch140+385-811A Shaft to Ch139+224-CP94) |  | 12d | 2013-11-18 A | 2013-11-30 A | 8200TBC570, 8200TBC575 SS+38d | 100% |  |  |  | Cal 3 | Other Skill Labour (Civil) [960 h] | DJa |  | CC C | TBM630 | DT | 1 | JMB | 820 | C | 2010 | TUNS | DT | C090 | EPIW | 820_AB |  | 30m/d |  |  |  |  |
| 8200TBC579b |  | Tunnel Invert & Walkway (811A side - Ch140+385-811A Shaft to Ch139+224-CP94) |  | 75d | 2013-12-02 A | 2014-03-15 A | 8200TBC579a | 100% | 2013-12-02 | 2014-03-05 | start on 2013-12-02 | Cal 3 | Other Skill Labour (Civil) [1800 h]; Concretor [600 h]; Steel Fixer [1376 h] | DJa |  | CC C | TBM630 | DT | 1 | JMB | 820 | C | 2010 | TUNS | DT | C090 | EPIW | 820_AB | 2444m,1102+1341 | 30m/d |  |  |  |  |
| 8200TBC579c |  | Setup Equipment for Invert & Walkway Construction (Ch137+941-NAC Shaft to Ch139+224-CP94) |  | 10d | 2014-02-04 A | 2014-02-11 A | 8200TBC579b SS+45d, 8200TBC575 | 100% | 2014-02-04 | 2014-02-14 |  | Cal 3 | Other Skill Labour (Civil) [480 h] | DJa |  | CC C | TBM630 | DT | 1 | JMB | 820 | C | 2010 | TUNS | DT | C090 | EPIW | 820_AB |  | 30m/d |  |  |  |  |
| 8200TBC579d |  | Tunnel Invert & Walkway (820 side - Ch137+941-NAC Shaft to Ch139+224-CP94) |  | 76d | 2014-02-12 A | 2014-05-02 A | 8200TBC575, 8200TBC579c | 100% | 2014-02-12 | 2014-05-19 |  | Cal 3 | Steel Fixer [1216 h]; Other Skill Labour (Civil) [1216 h]; Concretor [1216 h] | DJa |  | CC C | TBM630 | DT | 1 | JMB | 820 | C | 2010 | TUNS | DT | C090 | EPIW | 820_AB | 2444m,1102+1341 | 30m/d |  |  |  |  |
| 8200TBC580 |  | Deg. 1 Works (4A(ii) Target: 18-May-14) |  | 90d | 2014-03-01 A | 2014-05-03 A | 8200TBC579d FF, 8200TBC579b SS | 100% | 2014-03-01 | 2014-06-23 |  | Cal 3 | Other Skill Labour (Civil) [2880 h] | DJa |  | CC C | TBM630 | DT | 1 | JMB | 820 | C | 2010 | TUNN | UT |  |  | 820_AB |  |  |  |  |  |  |
|  | 1 | **Uptrack Construction (South)** |  |  | 2011-07-15 | 2015-02-28 |  |  |  |  |  |  |  |  |  |  |  |  |  |  |  |  |  |  |  |  |  |  |  |  |  |  |  |  |
|  | 1 | **Ground Treatment (South-UT)** |  |  | 2011-07-15 | 2013-12-30 |  |  |  |  |  |  |  |  |  |  |  |  |  |  |  |  |  |  |  |  |  |  |  |  |  |  |  |  |
| 8200TBC610 |  | Works Area 12.1 (Subject to SLG Approval) | milestone | 0d | 2011-07-15 A | 2011-07-15 A | 8200TMC190, 8200AC1410 | 100% | 2011-08-31 | 2011-08-31 |  |  |  | DJa |  | CC C | TBM630 | UT | A |  | 820 | C | 2030 | TUNN | UT | C090 |  | 820_AB |  |  |  |  |  |  |
| 8200TBC845 |  | Site Set up for Y.M.T School Grouting Works |  | 48d | 2011-07-15 A | 2011-09-15 A | 8200TBC610 | 100% | 2011-08-31 | 2011-10-31 |  | Cal 1 | Other Skill Labour (Civil) [2304 h] | DJa |  | CC C | TBM630 | UT | 1 | DJa | 820 | C | 2010 | TUNN | UT | C090 | EPIW | 820_AB | 20mL |  | 1 |  |  |  |
| 8200TBC848 |  | Install Sleeve Pipe (Y.M.T. Catholic Primary School) (UT) |  | 23d | 2011-09-16 A | 2011-10-17 A | 8200TMC190, 8200TBC845, 8200y0100 FF, 8200TBC411a | 100% | 2012-01-16 | 2012-02-14 |  | Cal 1 | Drilling Rig [23 h]; Other Skill Labour (Civil) [1104 h] | DJa |  | CC C | TBM630 | UT | 1 | DJa | 820 | C | 2010 | TUNN | UT | C090 | EPIW | 820_AB | 20mL |  | 1 | S2 | 2013-11-13 | 2013-11-13 |
| 8200TBC855 |  | Grouting Wk@N/B Ch140+340: Bldg. Foundation (Y.M.T. Catholic Primary School) (UT) |  | 73d | 2011-10-18 A | 2012-01-14 A | 8200TBC411a, 8200TBC845, 8200TBC848, 8200TMC190, 8200y0100 FF | 100% | 2012-01-16 | 2012-04-19 |  | Cal 1 | Drilling Rig [73 h]; Other Skill Labour (Civil) [3504 h] | DJa |  | CC C | TBM630 | UT | 1 | DJa | 820 | C | 2010 | TUNN | UT | C090 | EPIW | 820_AB | 20mL |  | 1 | S2 | 2013-11-13 | 2013-11-13 |
| 8200TBC858 |  | Reinstatement Works for Y.M.T. School |  | 24d | 2012-01-16 A | 2012-03-15 A | 8200TBC855 FS-12d, 8200TBC848 FS-12d | 100% | 2012-08-31 | 2012-09-29 |  | Cal 1 | Drilling Rig [24 h]; Other Skill Labour (Civil) [1152 h] | DJa |  | CC C | TBM630 | UT | 1 | DJa | 820 | C | 2010 | TUNN | UT | C090 | EPIW | 820_AB | 20mL |  | 1 |  |  |  |
|  | 1 | **Tai Kok Tsui Grouting Works** |  |  | 2012-04-14 | 2013-12-30 |  |  |  |  |  |  |  |  |  |  |  |  |  |  |  |  |  |  |  |  |  |  |  |  |  |  |  |  |
|  | 1 | **Zone 4** |  |  | 2012-07-03 | 2013-12-30 |  |  |  |  |  |  |  |  |  |  |  |  |  |  |  |  |  |  |  |  |  |  |  |  |  |  |  |  |
| 8200TBC1218 |  | TKT Zone 4 - Trial pit |  | 10d | 2012-07-03 A | 2012-07-31 A | 8200TBC1548 | 100% | 2012-03-26 | 2012-04-11 |  | Cal 1 | Other Skill Labour (Civil) [480 h] | DJa |  | CC C | TBM630 | CRIT DA | A |  | 820 | C |  |  |  |  |  | 820_AB |  |  |  |  |  |  |
| 8200TBC1225 |  | TKT Zone 4 - Sleeves installation |  | 8d | 2012-10-03 A | 2012-10-11 A | 8200TBC1218, 8200TBC1318 | 100% |  |  |  | Cal 1 | Plant Operator [64 h]; Other Skill Labour (Civil) [384 h]; Drilling Rig [8 h] | DJa |  | CC C | TBM630 | CRIT DA | A |  | 820 | C |  |  |  |  |  | 820_AB |  |  |  |  |  |  |
| 8200TBC1228 |  | TKT Zone 4 - Ground Treatment Works (TAM grouting) |  | 73d | 2012-10-12 A | 2013-02-23 A | 8200TBC1225 | 100% | 2012-10-12 | 2013-01-09 |  | Cal 1 | Drilling Rig [143 h]; Other Skill Labour (Civil) [7008 h]; Plant Operator [1168 h] | DJa | TBM | CC C | TBM630 | DT |  | INg |  | C |  |  |  |  |  | 820_AB |  |  | 2 |  |  |  |
| 8200TBC1238 |  | TKT Zone 4 - Permeability Test |  | 4d | 2013-04-15 A | 2013-04-20 A | 8200TBC1228, 8200y0770 FF | 100% | 2013-04-15 | 2013-04-18 |  | Cal 1 |  | DJa |  | CC C | TBM630 | CRIT DA | A |  | 820 | C |  |  |  |  |  | 820_AB |  |  |  |  |  |  |
| 8200TBC1248 |  | TKT Zone 4 - Reinstatement |  | 81d | 2013-08-12 A | 2013-12-30 A | 8200TBC1648, 8200TBC1238 | 100% | 2013-08-12 | 2013-11-20 |  | Cal 1 | Plant Operator [1296 h]; Other Skill Labour (Civil) [3888 h]; Backhoe [81 h]; Roller [81] | DJa |  | CC C | TBM630 | CRIT DA | A |  | 820 | C |  |  |  |  |  | 820_AB |  |  |  |  |  |  |
|  | 2 | **Zone 5** |  |  | 2012-10-03 | 2013-06-29 |  |  |  |  |  |  |  |  |  |  |  |  |  |  |  |  |  |  |  |  |  |  |  |  |  |  |  |  |
| 8200TBC1335 |  | TKT Zone 5 - Trial pit |  | 20d | 2012-10-03 A | 2012-10-08 A | 8200TBC1228 SS+49d | 100% | 2012-11-30 | 2012-12-22 |  | Cal 1 | Other Skill Labour (Civil) [960 h] | DJa |  | CC C | TBM630 | CRIT DA | A |  | 820 | C |  |  |  |  |  | 820_AB |  |  |  |  |  |  |
| 8200TBC1338 |  | TKT Zone 5 - Install guide sleeves (Stage 1) |  | 14d | 2012-10-09 A | 2012-10-20 A | 8200TBC1328, 8200TBC1335 | 100% | 2012-12-24 | 2013-01-11 |  | Cal 1 | Plant Operator [112 h]; Other Skill Labour (Civil) [672 h]; Drilling Rig [14 h] | DJa |  | CC C | TBM630 | CRIT DA | A |  | 820 | C |  |  |  |  |  | 820_AB |  |  |  |  |  |  |
| 8200TBC1358 |  | TKT Zone 5 - TTMS (Part 2) + Trial pit |  | 32d | 2012-10-22 A | 2012-11-01 A | 8200TBC1338 | 100% | 2012-11-09 | 2012-12-15 |  | Cal 1 | Other Skill Labour (Civil) [1536 h] | DJa |  | CC C | TBM630 | CRIT DA | A |  | 820 | C |  |  |  |  |  | 820_AB |  |  |  |  |  |  |
| 8200TBC1362 |  | TKT Zone 5 - Install guide sleeves (Stage 2) |  | 13d | 2012-11-02 A | 2012-11-14 A | 8200TBC1358 | 100% | 2013-01-02 | 2013-01-16 |  | Cal 1 | Drilling Rig [13 h]; Other Skill Labour (Civil) [624 h]; Plant Operator [104 h] | DJa |  | CC C | TBM630 | CRIT DA | A |  | 820 | C |  |  |  |  |  | 820_AB |  |  |  |  |  |  |
| 8200TBC1368 |  | TKT Zone 5 - Ground Treatment Works (TAM grouting) Part 2 |  | 49d | 2012-11-16 A | 2012-12-28 A | 8200TBC1362 | 100% | 2013-01-17 | 2013-03-18 |  | Cal 1 | Drilling Rig [49 h]; Other Skill Labour (Civil) [4080 h]; Plant Operator [1360 h] | DJa | TBM | CC C | TBM630 | DT |  | INg |  | C |  |  |  |  |  | 820_AB |  |  | 2 |  |  |  |
| 8200TBC1378 |  | TKT Zone 5 - Rearrange TTMS (Part 1) |  | 12d | 2013-01-10 A | 2013-01-10 A | 8200TBC1368 | 100% | 2013-01-10 | 2013-01-23 |  | Cal 1 | Other Skill Labour (Civil) [576 h] | DJa |  | CC C | TBM630 | CRIT DA | A |  | 820 | C |  |  |  |  |  | 820_AB |  |  |  |  |  |  |
| 8200TBC1398 |  | TKT Zone 5 - Ground Treatment Works (TAM grouting) Part 1 |  | 42d | 2013-01-11 A | 2013-03-22 A | 8200TBC1378 | 100% | 2013-01-11 | 2013-03-04 |  | Cal 1 | Drilling Rig [42 h]; Other Skill Labour (Civil) [2016 h]; Plant Operator [336 h] | DJa | TBM | CC C | TBM630 | DT |  | INg |  | C |  |  |  |  |  | 820_AB |  |  | 2 |  |  |  |
| 8200TBC1408 |  | TKT Zone 5 - Permeability Test |  | 4d | 2013-03-25 A | 2013-04-22 A | 8200TBC1398 FF, 8200TBC1398, 8200y0780 FF | 100% | 2013-03-25 | 2013-03-28 |  | Cal 1 |  | DJa |  | CC C | TBM630 | CRIT DA | A |  | 820 | C |  |  |  |  |  | 820_AB |  |  |  |  |  |  |
| 8200TBC1418 |  | TKT Zone 5 - Reinstatement |  | 49d | 2013-04-30 A | 2013-06-29 A | 8200TBC1408 | 100% | 2013-04-30 | 2013-07-04 |  | Cal 1 | Other Skill Labour (Civil) [2368 h]; Plant Operator [784 h]; Roller [49]; Backhoe [49 h] | DJa | TBM | CC C | TBM630 | DT |  | INg |  | C |  |  |  |  |  | 820_AB |  |  | 2 |  |  |  |

Notes:
- 8200TBC579b: Estimation: Start just after completion of CP94 assume start on CH139+224, 1283m by / 15m/d

| ID | WBS | Activity | Type | Duration | Start | Finish | Predecessors | Complete | Planned start | Planned finish | Constraint | Calendar | Resources | Responsible by | Classify | Priority A | LEVEL 1 | LEVEL 2 | LEVEL 3 | Responsible (bm makes Global) | Cost Centre | 820_As-built | TBM DT s | TBM DT f | Sum1 | SUMMARY | Contracts | Location of Works | Sub-locationof Works | Areas/ Rooms | Phases of Works | Classification of Works | QUANTITY | Production Rate |
| --- | --- | --- | --- | --- | --- | --- | --- | --- | --- | --- | --- | --- | --- | --- | --- | --- | --- | --- | --- | --- | --- | --- | --- | --- | --- | --- | --- | --- | --- | --- | --- | --- | --- | --- |
|  | 3 | **Zone 6** |  |  | 2012-04-14 | 2012-04-30 |  |  |  |  |  |  |  |  |  |  |  |  |  |  |  |  |  |  |  |  |  |  |  |  |  |  |  |  |
| 8200TBC1798 |  | TKT Zone 6 - Further soil investigation to review ground treatment requirement |  | 12d | 2012-04-14 A | 2012-04-30 A | 8200TBC1718 SS | 100% |  |  |  | Cal 1 | Other Skill Labour (Civil) [1296 h]; Plant Operator [216 h]; Drilling Rig [27 h] | DJa | TBM | 2 | CC C | TBM630 | DT | INg | C | 820_AB |  |  |  |  |  |  |  |  |  |  |  |  |
| 8200TBC1808 |  | TKT Zone 6 - Decision to confirm ground treatment requirement | milestone | 0d | 2012-04-30 A | 2012-04-30 A | 8200TBC1798 | 100% |  |  |  | Cal 1 |  | DJa | TBM | 2 | CC C | TBM630 | DT | INg | C | 820_AB |  |  |  |  |  |  |  |  |  |  |  |  |
|  | 2 | **TBM Excavation (South-UT)** |  |  | 2011-11-13 | 2015-02-28 |  |  |  |  |  |  |  |  |  |  |  |  |  |  |  |  |  |  |  |  |  |  |  |  |  |  |  |  |
| 8200TBC926 |  | Piles Removal@CLP Equipment Bldg.& Footbridges KF-119 by 805 | milestone | 0d | 2011-11-13 A | 2011-11-13 A | 8200PD7020 FF | 100% | 2012-01-15 | 2012-01-15 |  |  |  | DJa |  |  | CC C | TBM630 | UT | DJa | C | 820_AB | 2012-05-07 | 2012-05-07 | S2 | A | 820 | 2030 | TUNS | DT | C090 | EPIW |  |  |
| 8200TBC891 |  | Obstructions Removal BelowNamCheong Property/ 802 (11Dec2011-Contract) | milestone | 0d | 2011-12-11 A | 2011-12-11 A |  | 100% | 2012-01-15 | 2012-01-15 | finish on or after 2011-12-11 |  |  | DJa |  |  | CC C | TBM630 | UT | DJa | C | 820_AB |  |  |  | TBM | 820 | 2010 | TUNS | DT | C090 | EPIW |  |  |
| 8200TBC891a |  | Unobstructed Pasage Available (30 April 2013) (further confirm by MTR) | milestone | 0d | 2013-04-30 A | 2013-04-30 A | 8200PD7015 FF | 100% |  |  | finish on or after 2013-04-30 |  |  | DJa |  |  | CC C | TBM630 | UT | DJa | C | 820_AB |  |  |  | A | 820 | 2010 | TUNN | UT | C090 | EPIW |  |  |
| 8200TBC893 |  | Obstructions Removal Below Nam Cheong Property by 802 | milestone | 0d | 2013-04-30 A | 2013-04-30 A |  | 100% |  |  | finish on or after 2013-04-30 |  |  | DJa |  |  | CC C | TBM630 | UT | DJa | C | 820_AB |  |  |  | TBM | 820 | 2010 | TUNS | DT | C090 | EPIW |  |  |
| 8200TBC840 |  | TBM S630-1 Re-assembly |  | 53d | 2013-10-15 A | 2013-12-13 A | 8200TBC575 SS+16d | 100% | 2013-10-15 | 2013-12-06 |  |  | TBM Maintenance Crew [10640 h] | DJa | A |  | CC C | TBM630 | UT | DJa | C | 820_AB |  |  | S0 | 1 | 820 | 2010 | TUNN | UT | C090 | EPIW |  |  |
| 8200TBC860 |  | U/T Excavation Ch137+968-137+993 (Break-in) |  | 6d | 2013-12-14 A | 2013-12-19 A | 8200TBC840 | 100% |  |  |  | Cal 5 | TBM Excavation [1774 m3]; TBM Maintenance Crew [864 h]; TBM Operational Crew [2304 h]; TBM [48 h] | DJa | A |  | CC C | TBM630 | UT | DJa | C | 820_AB |  |  |  |  |  |  |  |  |  |  | 26m |  |
| 8200TBC870 |  | U/T Excavation Ch137+993-138+040 |  | 12d | 2013-12-19 A | 2013-12-25 A | 8200CCG645, 8200TBC865, 8200CCG655 | 100% | 2013-12-19 | 2013-12-30 |  | Cal 5 | TBM Excavation [3206 m3]; TBM Maintenance Crew [1728 h]; TBM Operational Crew [4608 h]; TBM [96 h] | DJa | A |  | CC C | TBM630 | UT | DJa | C | 820_AB |  |  |  | 1 | 820 | 2010 | TUNN | UT | C090 | EPIW | 47m |  |
| 8200TBC865 |  | Reach Rising Main & FMO Pier A Obstruction | milestone | 0d | 2013-12-19 A | 2013-12-19 A | 8200TBC840, 8200TBC860 | 100% |  |  |  |  |  | DJa | A |  | CC C | TBM630 | UT | DJa | C | 820_AB |  |  |  | 1 | 820 | 2010 | TUNN | UT | C090 | EPIW |  |  |
| 8200TBC875 |  | U/T Excavation Ch138+040-138+070 |  | 2d | 2013-12-25 A | 2013-12-26 A | 8200TBC870 | 100% |  |  |  | Cal 5 | TBM Excavation [2047 m3]; TBM Maintenance Crew [288 h]; TBM Operational Crew [768 h]; TBM [16 h] | DJa | A |  | CC C | TBM630 | UT | DJa | C | 820_AB |  |  |  | 1 | 820 | 2010 | TUNN | UT | C090 | EPIW | 30m |  |
| 8200TBC890 |  | U/T Excavation Ch138+070-138+175 |  | 8d | 2013-12-26 A | 2014-01-04 A | 8200TBC880 | 100% | 2013-12-26 | 2014-01-02 |  | Cal 4 | TBM Excavation [7163 m3]; TBM Maintenance Crew [1152 h]; TBM Operational Crew [3072 h]; TBM [64 h] | DJa | A |  | CC C | TBM630 | UT | DJa | C | 820_AB |  |  |  | 1 | 820 | 2010 | TUNN | UT | C090 | EPIW | 105m |  |
| 8200TBC880 |  | Reach FMO Pier B Pile Obstruction Ch138+070 | milestone | 0d | 2013-12-26 A | 2013-12-26 A | 8200TBC875, 8200CCF784 | 100% |  |  |  |  |  | DJa | A |  | CC C | TBM630 | UT | DJa | C | 820_AB |  |  |  | 1 | 820 | 2010 | TUNN | UT | C090 | EPIW |  |  |
| 8200TBC890z |  | Reach CP89 (CH138+081) | milestone | 0d | 2013-12-27 A | 2013-12-27 A | 8200CPC358, 8200TBC890 SF+1d, 8200TBC890 FF-7d | 100% |  |  |  |  |  | DJa | C1 |  | CC C | TBM630 | UT | DJa | C | 820_AB |  |  |  |  |  |  |  |  |  |  | 668m=45571m3 |  |
| 8200TBC892 |  | Reach Nam Cheong Property Property / 802 | milestone | 0d | 2013-12-30 A | 2013-12-30 A | 8200TBC890 | 100% |  |  |  | Cal 4 |  | DJa | A |  | CC C | TBM630 | UT | DJa | C | 820_AB |  |  |  |  |  |  |  |  |  |  |  |  |
| 8200TBC894 |  | U/T Excavation Ch138+175 -138+450 |  | 23d | 2014-01-04 A | 2014-04-09 A | 8200TBC891a, 8200TBC891, 8200TBC926, 8200TBC890, 8200TBC893, 8200TBC892, 8200TBC890z | 100% | 2014-01-04 | 2014-01-26 |  | Cal 4(3) | TBM Maintenance Crew [3312 h]; TBM Operational Crew [8832 h]; TBM [184 h]; TBM Excavation [18761 m3] | DJa | A |  | CC C | TBM630 | UT | DJa | C | 820_AB |  |  |  |  |  |  |  |  |  |  | 275m |  |
| 8200TBC927 |  | Reach Footbridge KF119 (Piles removed by 805) | milestone | 0d | 2014-03-12 A | 2014-03-12 A | 8200TBC925 | 100% |  |  |  |  |  | DJa | A |  | CC C | TBM630 | UT | DJa | C | 820_AB |  |  |  |  |  |  |  |  |  |  |  |  |
| 8200TBC894z |  | Reach CP90 (CH138+341) | milestone | 0d | 2014-04-04 A | 2014-04-04 A | 8200TBC894 SF+14d, 8200TBC894 FF-9d | 100% |  |  |  |  |  | DJa | C1 |  | CC C | TBM630 | UT | DJa | C | 820_AB |  |  |  |  |  |  |  |  |  |  | 668m=45571m3 |  |
| 8200TBC895 |  | U/T Excavation Ch138+450-138+490 |  | 3d | 2014-04-09 A | 2014-04-11 A | 8200TBC894, 8200TBC894z | 100% |  |  |  | Cal 5(3) | TBM Excavation [2729 m3]; TBM Maintenance Crew [432 h]; TBM Operational Crew [1152 h]; TBM [24 h] | DJa | A |  | CC C | TBM630 | UT | DJa | C | 820_AB |  |  |  | 1 | 820 | 2010 | TUNN | UT | C090 | EPIW | 40m |  |
| 8200TBC905 |  | U/T Excavation Ch138+490-138+610 |  | 8d | 2014-04-11 A | 2014-04-17 A | 8200TBC900, 8200TBC880, 8200TBC891a | 100% | 2014-04-11 | 2014-04-18 |  | Cal 5(3) | TBM Excavation [8186 m3]; TBM Maintenance Crew [1152 h]; TBM Operational Crew [3072 h]; TBM [64 h] | DJa | A |  | CC C | TBM630 | UT | DJa | C | 820_AB |  |  |  | 1 | 820 | 2010 | TUNN | UT | C090 | EPIW | 120m |  |
| 8200TBC900 |  | Reach Shum Shui Po Pier Pile Obstruction Ch138+490 | milestone | 0d | 2014-04-11 A | 2014-04-11 A | 8200CCF856, 8200TBC895, 8200CCF858, 8200TBC880, 8200TBC891a | 100% |  |  |  |  |  | DJa | A |  | CC C | TBM630 | UT | DJa | C | 820_AB |  |  |  | 1 | 820 | 2010 | TUNN | UT | C090 | EPIW |  |  |
| 8200TBC905z |  | Reach CP91 (CH138+546) | milestone | 0d | 2014-04-14 A | 2014-04-14 A | 8200TBC905 SF+4d, 8200TBC905 FF-4d, 8200CPC508 | 100% |  |  |  |  |  | DJa | C1 |  | CC C | TBM630 | UT | DJa | C | 820_AB |  |  |  |  |  |  |  |  |  |  | 668m=45571m3 |  |
| 8200TBC915 |  | U/T Excavation Ch138+610-138+670 |  | 4d | 2014-04-17 A | 2014-04-22 A | 8200TBC910, 8200CCG725 | 100% | 2014-04-17 | 2014-04-20 |  | Cal 5(3) | TBM Maintenance Crew [576 h]; TBM Operational Crew [1536 h]; TBM [32 h]; TBM Excavation [4093 m3] | DJa | A |  | CC C | TBM630 | UT | DJa | C | 820_AB |  |  |  | 1 | 820 | 2010 | TUNN | UT | C090 | EPIW | 60m |  |
| 8200TBC910 |  | Reach YC2 Culvert Pile Obstruction Ch138+610 | milestone | 0d | 2014-04-17 A | 2014-04-17 A | 8200TBC905z, 8200TBC905 | 100% |  |  |  |  |  | DJa | A |  | CC C | TBM630 | UT | DJa | C | 820_AB |  |  |  | 1 | 820 | 2010 | TUNN | UT | C090 | EPIW |  |  |
| 8200TBC925 |  | U/T Excavation Ch138+670-139+026 |  | 25d | 2014-04-22 A | 2014-05-12 A | 8200TBC920, 8200CCG928a | 100% | 2014-04-22 | 2014-05-16 |  | Cal 5(3) | TBM Excavation [24286 m3]; TBM Maintenance Crew [3600 h]; TBM Operational Crew [9600 h]; TBM [200 h] | DJa | A |  | CC C | TBM630 | UT | DJa | C | 820_AB |  |  |  | 1 | 820 | 2010 | TUNN | UT | C090 | EPIW | 356m |  |
| 8200TBC920 |  | Reach NC1 Culvert Pile Obstruction Ch138+670 | milestone | 0d | 2014-04-22 A | 2014-04-22 A | 8200TBC915, 8200CCG928 | 100% |  |  |  |  |  | DJa | A |  | CC C | TBM630 | UT | DJa | C | 820_AB |  |  |  | 1 | 820 | 2010 | TUNN | UT | C090 | EPIW |  |  |
| 8200TBC925z1 |  | Reach CP92 (CH138+796) | milestone | 0d | 2014-04-29 A | 2014-04-29 A | 8200CPC575, 8200TBC925 SF+9d, 8200TBC925 FF-16d | 100% |  |  |  |  |  | DJa | C1 |  | CC C | TBM630 | UT | DJa | C | 820_AB |  |  |  |  |  |  |  |  |  |  | 668m=45571m3 |  |
| 8200TBC925z2 |  | Reach CP93 (CH139+021) | milestone | 0d | 2014-05-11 A | 2014-05-11 A | 8200TBC925 FF, 8200CPC665, 8200TBC925 SF+25d | 100% |  |  |  |  |  | DJa | C1 |  | CC C | TBM630 | UT | DJa | C | 820_AB |  |  |  |  |  |  |  |  |  |  | 668m=45571m3 |  |
| 8200TBC928 |  | U/T Excavation Ch139+026-139+150 |  | 9d | 2014-05-12 A | 2014-05-22 A | 8200TBC925z1, 8200TBC925z2, 8200TBC927 | 100% | 2014-05-12 | 2014-05-20 |  | Cal 5(3) | TBM Excavation [8459 m3]; TBM Maintenance Crew [1296 h]; TBM Operational Crew [3456 h]; TBM [72 h] | DJa | A |  | CC C | TBM630 | UT | DJa | C | 820_AB |  |  |  |  |  |  |  |  |  |  | 124m |  |
| 8200TBC930 |  | U/T Excavation Ch139+150-139+360 |  | 49d | 2014-05-22 A | 2014-06-27 A | 8200TBC920, 8200TBC928 | 100% | 2014-05-22 | 2014-07-09 |  | Cal 5(3) | TBM Excavation [14326 m3]; TBM Maintenance Crew [7056 h]; TBM Operational Crew [18816 h]; TBM [392 h] | DJa | A |  | CC C | TBM630 | UT | DJa | C | 820_AB |  |  |  | 1 | 820 | 2010 | TUNN | UT | C090 | EPIW | 210m |  |
| 8200TBC930z |  | Reach CP94 (CH139+287) | milestone | 0d | 2014-06-18 A | 2014-06-18 A | 8200TBC930 FF-17d, 8200TBC930 SF+32d | 100% | 2014-06-27 | 2014-06-27 |  |  |  | DJa | C1 |  | CC C | TBM630 | UT | DJa | C | 820_AB |  |  |  |  |  |  |  |  |  |  | 668m=45571m3 |  |
| 8200TBC935 |  | U/T Excavation Ch139+360-139+530 |  | 18d | 2014-06-27 A | 2014-07-24 A | 8200TBC930z, 8200TBC930 | 100% | 2014-06-27 | 2014-07-14 |  | Cal 7 | TBM Operational Crew [6912 h]; TBM [144 h]; TBM Excavation [11597 m3]; TBM Maintenance Crew [2592 h] | DJa | A |  | CC C | TBM630 | UT | DJa | C | 820_AB |  |  |  | 1 | 820 | 2010 | TUNN | UT | C090 | EPIW | 170m |  |
| 8200TBC956 |  | Advance Noice to Contract 811A for Set Up of TBM Retrieval (60d) | milestone | 0d | 2014-06-27 A | 2014-06-27 A |  | 100% |  |  | as late as possible |  |  | DJa |  |  | CC C | TBM630 | UT | DJa | C | 820_AB |  |  |  |  |  |  |  |  |  |  |  |  |
| 8200TBC935z |  | Reach CP95 (CH139+524) | milestone | 0d | 2014-07-23 A | 2014-07-23 A | 8200TBC935 SF+17d, 8200TBC935 FF-1d | 100% |  |  |  |  |  | DJa | C1 |  | CC C | TBM630 | UT | DJa | C | 820_AB |  |  |  |  |  |  |  |  |  |  | 668m=45571m3 |  |
| 8200TBC940 |  | U/T Excavation Ch139+530-139+825 |  | 24d | 2014-07-24 A | 2014-08-30 A | 8200TBC935, 8200TBC935z | 100% | 2014-07-24 | 2014-08-16 |  | Cal 7 | TBM Excavation [20125 m3]; TBM Maintenance Crew [3456 h]; TBM Operational Crew [9216 h]; TBM [192 h] | DJa | A |  | CC C | TBM630 | UT | DJa | C | 820_AB |  |  |  | 1 | 820 | 2010 | TUNN | UT | C090 | EPIW | 295m |  |
| 8200TBC957 |  | Advance Noice to Contract 811A for TBM Break-out (30d) | milestone | 0d | 2014-08-15 A | 2014-08-15 A |  | 100% |  |  | as late as possible |  |  | DJa |  |  | CC C | TBM630 | UT | DJa | C | 820_AB |  |  |  |  |  |  |  |  |  |  |  |  |
| 8200TBC940z |  | Reach CP96 (CH139+729) | milestone | 0d | 2014-08-16 A | 2014-08-16 A | 8200TBC940 SF+16d, 8200TBC940 FF-8d | 100% |  |  |  |  |  | DJa | C1 |  | CC C | TBM630 | UT | DJa | C | 820_AB |  |  |  |  |  |  |  |  |  |  | 668m=45571m3 |  |
| 8200TBC964 |  | U/T Preparation Works inside Exit Shaft 811A |  | 34d | 2014-08-25 A | 2014-09-25 A | 8200TBC956 FS+60d, 8200TBC960 FF | 100% | 2014-09-01 | 2014-10-04 |  |  | TBM Operational Crew [13056 h]; TBM Maintenance Crew [4896 h] | DJa |  |  | CC C | TBM630 | UT | DJa | C | 820_AB |  |  |  |  |  |  |  |  |  |  |  |  |
| 8200TBC945 |  | U/T Excavation Ch139+825-139+875 |  | 10d | 2014-08-30 A | 2014-09-04 A | 8200TBC940z, 8200TBC940 | 100% | 2014-08-30 | 2014-09-08 |  | Cal 5(3) | TBM Excavation [3411 m3]; TBM Maintenance Crew [1440 h]; TBM Operational Crew [3840 h]; TBM [80 h] | DJa | A |  | CC C | TBM630 | UT | DJa | C | 820_AB |  |  |  | 1 | 820 | 2010 | TUNN | UT | C090 | EPIW | 50m |  |
| 8200TBC950 |  | U/T Excavation Ch139+875-139+950 |  | 7d | 2014-09-04 A | 2014-09-08 A | 8200TBC945 | 100% | 2014-09-04 | 2014-09-10 |  | Cal 5(3) | TBM Operational Crew [2688 h]; TBM [56 h]; TBM Excavation [5117 m3]; TBM Maintenance Crew [1008 h] | DJa | A |  | CC C | TBM630 | UT | DJa | C | 820_AB |  |  |  | 1 | 820 | 2010 | TUNN | UT | C090 | EPIW | 75m |  |
| 8200TBC955 |  | U/T Excavation Ch139+950-140+010 |  | 4d | 2014-09-08 A | 2014-09-10 A | 8200TBC950 | 100% | 2014-09-08 | 2014-09-11 |  | Cal 4(3) | TBM Excavation [4093 m3]; TBM Maintenance Crew [576 h]; TBM Operational Crew [1536 h]; TBM [32 h] | DJa | A |  | CC C | TBM630 | UT | DJa | C | 820_AB |  |  |  | 1 | 820 | 2010 | TUNN | UT | C090 | EPIW | 60m |  |
| 8200TBC955z |  | Reach CP97 (CH139+977) | milestone | 0d | 2014-09-09 A | 2014-09-09 A | 8200CPC904, 8200TBC955 FS-3d | 100% |  |  |  |  |  | DJa | C1 |  | CC C | TBM630 | UT | DJa | C | 820_AB |  |  |  |  |  |  |  |  |  |  | 668m=45571m3 |  |
| 8200TBC960 |  | U/T Excavation Ch140+010-140+394-Shaft 811A (Break-out) |  | 29d | 2014-09-10 A | 2014-09-27 A | 8200TBC955, 8200TBC955z, 8200TBC855, 8200TBC848, 8200TSC150 FF+18d, 8200TBC957 FF+31d | 100% | 2014-09-10 | 2014-10-08 |  | Cal 4(3) | TBM Excavation [26112 m3]; TBM Maintenance Crew [4176 h]; TBM Operational Crew [11136 h]; TBM [232 h] | DJa | A | 2 | CC C | TBM630 | UT | DJa | C | 820_AB |  |  |  | 1 | 820 | 2010 | TUNN | UT | C090 | EPIW | 385m |  |
| 8200TBC960z |  | Reach CP98 (CH140+226) | milestone | 0d | 2014-09-19 A | 2014-09-19 A | 8200TBC960 FS-12d | 100% |  |  |  |  |  | DJa | C1 |  | CC C | TBM630 | UT | DJa | C | 820_AB |  |  |  |  |  |  |  |  |  |  | 668m=45571m3 |  |
| 8200TBC960z10 |  | Reach YMT School (CH140+335) | milestone | 0d | 2014-09-24 A | 2014-09-24 A | 8200TBC960z, 8200TBC960 FF-10d | 100% |  |  |  |  |  | DJa | C1 |  | CC C | TBM630 | UT | DJa | C | 820_AB |  |  |  |  |  |  |  |  |  |  | 668m=45571m3 |  |
| 8200TBC961 |  | U/T exit Box Cleaning for TBM Dismantling |  | 5d | 2014-09-30 A | 2014-10-04 A | 8200TBC960z10, 8200y0050 FF, 8200TBC848, 8200TBC957 FF+30d, 8200TBC960, 8200TBC855 | 100% |  |  |  | Cal 4(3) | TBM Excavation; TBM Maintenance Crew [720 h]; TBM Operational Crew [1920 h]; TBM [5 h] | DJa | A | 2 | CC C | TBM630 | UT | DJa | C | 820_AB |  |  |  | 1 | 820 | 2010 | TUNN | UT | C090 | EPIW |  |  |
| 8200TBC970 |  | TBM (S630-1) Shield Dismantle & Removal |  | 36d | 2014-10-06 A | 2014-11-19 A | 8200TBC961, 8200TBC964 | 100% | 2014-10-06 | 2014-11-10 |  |  | TBM Maintenance Crew [5184 h] | DJa | A |  | CC C | TBM630 | UT | DJa | C | 820_AB |  |  |  | 1 | 820 | 2010 | TUNN | UT | C090 | EPIW |  |  |
| 8200TBC978 |  | Setup Equipment for Invert & Walkway Construction (Ch137+941-NAC Shaft to Ch139+435) (7 working days) |  | 5d | 2014-10-16 A | 2014-10-20 A | 8200TBC975 | 100% |  |  |  |  | Other Skill Labour (Civil) [160 h] | DJa |  |  | CC C | TBM630 | UT | JMB | C | 820_AB |  |  |  | 1 | 820 | 2010 | TUNS | DT | C090 | EPIW |  | 30m/d |
| 8200TBC985 |  | 820 side - Tunnel Invert & Walkway (Ch137+941-NAC Shaft to Ch139+435, 1494m) (7 working days) |  | 75d | 2014-10-21 A | 2014-12-16 A | 8200TBC978, 8200TBC975 | 100% | 2014-10-21 | 2015-01-03 |  |  | Other Skill Labour (Civil) [1200 h]; Concretor [1200 h]; Steel Fixer [1200 h] | DJa |  |  | CC C | TBM630 | UT | JMB | C | 820_AB |  |  |  | 1 | 820 | 2010 | TUNN | UT | C090 | EPIW | 2452m |  |
| 8200TBC980 |  | Setup Equipment for Invert & Walkway Construction (Ch140+385-811A Shaft to Ch139+435) |  | 10d | 2014-11-03 A | 2014-11-08 A | 8200TBC975, 8200TBC985 SS+27d | 100% | 2014-11-03 | 2014-11-13 |  | Cal 3 | Other Skill Labour (Civil) [320 h] | DJa |  |  | CC C | TBM630 | UT | JMB | C | 820_AB |  |  |  | 1 | 820 | 2010 | TUNN | UT | C090 | EPIW | 2452m |  |
| 8200TBC986 |  | 820 side - Deg. 1 Works (Ch137+941-Shaft to Ch139+435) (4B(ii) Target: 21-Dec-14) (7 working days) |  | 55d | 2014-11-03 A | 2015-02-05 A | 8200TBC985 SS+23d | 100% | 2014-11-03 | 2014-12-27 |  |  | Other Skill Labour (Civil) [1760 h] | DJa |  |  | CC C | TBM630 | UT | JMB | C | 820_AB |  |  |  | 1 | 820 | 2010 | TUNN | UT |  |  |  |  |
| 8200TBC975 |  | TBM (S630-1) Backup Removal |  | 10d | 2014-11-06 A | 2014-11-19 A | 8200TBC961, 8200TBC970, 8200TBC940 | 100% | 2014-11-01 | 2014-11-10 |  |  | TBM Maintenance Crew [1440 h] | DJa |  |  | CC C | TBM630 | UT | DJa | C | 820_AB |  |  |  | 1 | 820 | 2010 | TUNN | UT | C090 | EPIW |  |  |
| 8200TBC987 |  | 811A side -Tunnel Invert & Walkway (Ch139+435 to Ch140+385-811A Shaft, 950m) |  | 58d | 2014-11-10 A | 2015-01-05 A | 8200TBC980 | 100% | 2014-11-10 | 2015-01-19 |  | Cal 3 | Concretor [928 h]; Steel Fixer [928 h]; Other Skill Labour (Civil) [928 h] | DJa |  |  | CC C | TBM630 | UT | JMB | C | 820_AB |  |  |  | 1 | 820 | 2010 | TUNN | UT | C090 | EPIW | 2452m |  |
| 8200TBC988 |  | 811A side - Deg. 1 Works ( Ch140+385-811A Shaft to Ch139+435) (4B(iii) Target: 25-Jan-15) |  | 46d | 2014-12-01 A | 2015-02-28 A | 8200TBC987 SS+14d | 100% | 2014-12-01 | 2015-01-26 |  | Cal 3 | Other Skill Labour (Civil) [1472 h] | DJa |  |  | CC C | TBM630 | UT | JMB | C | 820_AB |  |  |  | 1 | 820 | 2010 | TUNN | UT | C090 | EPIW | 2452m |  |

Notes:
- 8200TBC870: Problems Encountered: link to 8200CCG655 FS (Rising M); / link to 8200CCG825 FS (Rising M)
- 8200TBC915: Problems Encountered: link to 8200CCG755 FS (YC2)
- 8200TBC960: Problems Encountered: link to 8200TSC150 FF60 (Segment Remaining)
- 8200TBC985: Basis & Assumptions: assume invert construction with 15m/d (with CP works in tunnel); which the / rate is subject to the CP98 completion of CP works, otherwise the rate will be / 20m/d. / >>27d (be found) >>27x15=405m>>CH137+941 + / (405)=CH138+346
- 8200TBC980: Basis & Assumptions: assume 20m/d (w/o CP works inside the tunnel)
- 8200TBC987: Basis & Assumptions: assume invert construction with 15m/d (with CP works in tunnel); which the / rate is subject to the CP98 completion of CP works, otherwise the rate will be / 20m/d. / >>27d (be found) >>27x15=405m>>CH137+941 + / (405)=CH138+346
- 8200TBC988: Basis & Assumptions: assume invert construction with 15m/d (with CP works in tunnel); which the / rate is subject to the CP98 completion of CP works, otherwise the rate will be / 20m/d. / >>27d (be found) >>27x15=405m>>CH137+941 + / (405)=CH138+346

| ID | WBS | Activity | Type | Duration | Start | Finish | Predecessors | Complete | Remaining | Planned start | Planned finish | Total float | Free float | Calendar | Resources | Responsible by | LEVEL 1 | LEVEL 2 | LEVEL 3 | SUMMARY | Contracts | Cost Centre | Phases of Works | 820_As-built | Priority A | TBM DT s | TBM DT f | Sum1 | TBM UT f | TBM UT s | Order | User Start 2 | User Finish 2 | QUANTITY | Classify | Intrafor Finish | Intrafor Start | TS & TN | Works Area | Location of Works | Sub-locationof Works | Classification of Works |
| --- | --- | --- | --- | --- | --- | --- | --- | --- | --- | --- | --- | --- | --- | --- | --- | --- | --- | --- | --- | --- | --- | --- | --- | --- | --- | --- | --- | --- | --- | --- | --- | --- | --- | --- | --- | --- | --- | --- | --- | --- | --- | --- |
|  | 70 | **Tunnel Alignment Design/Submission/Approval** |  |  | 2010-05-12 | 2010-09-07 |  |  |  |  |  |  |  |  |  |  |  |  |  |  |  |  |  |  |  |  |  |  |  |  |  |  |  |  |  |  |  |  |  |  |  |  |
|  | 10 | **Design** |  |  | 2010-05-12 | 2010-09-07 |  |  |  |  |  |  |  |  |  |  |  |  |  |  |  |  |  |  |  |  |  |  |  |  |  |  |  |  |  |  |  |  |  |  |  |  |
| 8200DSC100 |  | AIP Submission Preparation - Tunnel Alignment |  | 19d | 2010-05-12 A | 2010-06-03 A | 8200KD1020 | 100% |  | 2011-01-31 | 2011-02-21 |  |  | Cal 3 |  | KKw | CC C | TUNALG | DESIGN | A | 820 | C | C010 | 820_AB |  |  |  |  |  |  |  |  |  |  |  |  |  |  |  |  |  |  |
| 8200DSC110 |  | AIP Submission to MTR (RDO/GEO consultation) | milestone | 0d | 2010-06-03 A | 2010-06-03 A | 8200DSC100 FF | 100% |  | 2011-03-12 | 2011-03-12 |  |  | Cal 3 |  | KKw | CC C | TUNALG | DESIGN | A | 820 | C | C010 | 820_AB |  |  |  |  |  |  |  |  |  |  |  |  |  |  |  |  |  |  |
| 8200DSC120 |  | AIP Comment by MTR (RDO/GEO consultation) |  | 15d | 2010-06-04 A | 2010-06-18 A | 8200DSC110 | 100% |  | 2011-03-13 | 2011-03-27 |  |  |  |  | KKw | CC C | TUNALG | DESIGN | A | 820 | C | C010 | 820_AB |  |  |  |  |  |  |  |  |  |  |  |  |  |  |  |  |  |  |
| 8200DSC130 |  | AIP ReSubmission Preparation - Tunnel Alignment |  | 11d | 2010-06-19 A | 2010-07-02 A | 8200DSC120 | 100% |  | 2011-04-06 | 2011-04-18 |  |  | Cal 3 |  | KKw | CC C | TUNALG | DESIGN | A | 820 | C | C010 | 820_AB |  |  |  |  |  |  |  |  |  |  |  |  |  |  |  |  |  |  |
| 8200DSC140 |  | AIP ReSubmission to MTR (RDO/GEO consultation) | milestone | 0d | 2010-07-02 A | 2010-07-02 A | 8200DSC130 FF | 100% |  | 2011-05-07 | 2011-05-07 |  |  | Cal 3 |  | KKw | CC C | TUNALG | DESIGN | A | 820 | C | C010 | 820_AB |  |  |  |  |  |  |  |  |  |  |  |  |  |  |  |  |  |  |
| 8200DSC150 |  | AIP Approval by MTR (RDO/GEO consultation) |  | 61d | 2010-07-03 A | 2010-09-01 A | 8200DSC140 | 100% |  | 2011-05-08 | 2011-07-07 |  |  |  |  | KKw | CC C | TUNALG | DESIGN | A | 820 | C | C010 | 820_AB |  |  |  |  |  |  |  |  |  |  |  |  |  |  |  |  |  |  |
| 8200DSC170 |  | DD Submission MTR/RDO for Record | milestone | 0d | 2010-09-07 A | 2010-09-07 A | 8200DSC150 | 100% |  | 2011-05-31 | 2011-05-31 |  |  | Cal 3 |  | KKw | CC C | TUNALG | DESIGN | A | 820 | C | C010 | 820_AB |  |  |  |  |  |  |  |  |  |  |  |  |  |  |  |  |  |  |
|  | 80 | **Cross Passages** |  |  | 2010-06-08 | 2015-05-31 |  |  |  |  |  |  |  |  |  |  |  |  |  |  |  |  |  |  |  |  |  |  |  |  |  |  |  |  |  |  |  |  |  |  |  |  |
| 8200y0530 |  | CP98 | level of effort | 0d | 2010-10-15 A | 2014-12-10 A | 8200CPC925 SS | 100% |  | 2013-11-30 | 2013-11-30 |  |  |  |  |  |  |  |  |  |  |  |  | 820_AB | 4 | 2013-02-04 | 2013-02-04 | c98a | 2014-02-28 | 2014-02-28 | 34 |  |  |  |  |  |  |  |  |  |  |  |
| 8200y0320 |  | CP88 Jet Grouting from Surface | level of effort | 104d | 2011-04-11 A | 2011-10-31 A | 8200CPC292 SS | 100% |  | 2011-08-31 | 2011-12-12 |  |  |  | Drilling Rig [104 h]; Other Skill Labour (Civil) [4992 h]; Plant Operator [832 h] |  | CC C | CROSS PASS | CP88 | A | 820 | C | C090 | 820_AB | 1 |  |  | c88 |  |  | 13 | 2011-05-03 | 2011-09-15 | Ch137+551 | CP | 2011-09-15 | 2011-05-03 | N | 11.21 | 2030 | CP | EPIW |
| 8200y0400 |  | CP92 Grouting from Surface | level of effort | 211d | 2011-07-01 A | 2015-05-31 | 8200CPC572 SS, 8200CPC575 SS, 8200CPC573 SS | 100% | 0d | 2011-08-31 | 2012-03-28 | 367d | 0d |  |  |  |  |  |  |  |  |  |  | 820_AB | 4 |  |  | c92 |  |  | 21 |  |  |  |  |  |  |  |  |  |  |  |
| 8200y0340 |  | CP89 Grouting from Surface | level of effort | 212d | 2011-08-01 A | 2015-05-31 | 8200CPC355 SS | 100% | 0d | 2011-08-31 | 2012-03-29 | 367d | 0d |  |  |  |  |  |  |  |  |  |  | 820_AB | 4 |  |  | c89 |  |  | 15 |  |  |  |  |  |  |  |  |  |  |  |
| 8200y0380 |  | CP91 Grouting from Surface | level of effort | 192d | 2011-08-29 A | 2012-10-20 A | 8200CPC504 SS, 8200CPC505 SS, 8200CPC502 SS | 100% |  | 2011-09-12 | 2012-03-21 |  |  |  |  |  |  |  |  |  |  |  |  | 820_AB | 4 |  |  | c91 |  |  | 19 |  |  |  |  |  |  |  |  |  |  |  |
| 8200y0280 |  | CP86 Jet / Fissure Grouting from Surface | level of effort | 279d | 2011-09-20 A | 2012-10-20 A | 8200CPC158 SS | 100% |  | 2012-01-16 | 2012-10-20 |  |  |  |  |  |  |  |  |  |  |  |  | 820_AB | 4 |  |  | c86 |  |  | 9 |  |  |  |  |  |  |  |  |  |  |  |
| 8200y0420 |  | CP93 Grouting from Surface | level of effort | 263d | 2011-11-14 A | 2015-05-31 | 8200CPC665 SS, 8200CPC662 SS, 8200CPC660 SS | 100% | 0d | 2012-01-16 | 2012-10-04 | 367d | 0d |  |  |  |  |  |  |  |  |  |  | 820_AB | 4 |  |  | c93 |  |  | 23 |  |  |  |  |  |  |  |  |  |  |  |
| 8200y0500 |  | CP97 Jet Grouting from Surface | level of effort | 290d | 2012-01-16 A | 2012-11-24 A | 8200CPC903 SS, 8200CPC902a SS | 100% |  | 2012-01-16 | 2012-10-31 |  |  |  | Drilling Rig; Other Skill Labour (Civil) [5664 h] |  | CC C | CROSS PASS | CP95 | A | 820 | C | C090 | 820_AB | 3 |  |  | c97 |  |  | 31 | 2012-05-05 | 2013-01-05 | 139+504>>139+704 | CP |  |  | S | 12.1 | 2010 | CP | EPIW |
| 8200y0330 |  | CP88 | level of effort | 377d | 2012-03-30 A | 2013-07-26 A | 8200CPC300 SS | 100% |  | 2012-08-31 | 2013-09-11 |  |  |  |  |  |  |  |  |  |  |  |  | 820_AB | 4 | 2012-03-19 | 2012-03-19 | c88a | 2013-03-15 | 2013-03-15 | 14 |  |  |  |  |  |  |  |  |  |  |  |
| 8200y0310 |  | CP87 | level of effort | 392d | 2012-04-16 A | 2013-07-29 A | 8200CPC240 SS | 100% |  | 2012-08-31 | 2013-09-26 |  |  |  |  |  |  |  |  |  |  |  |  | 820_AB | 4 | 2012-04-18 | 2012-04-18 | c87a | 2013-04-06 | 2013-04-06 | 12 |  |  |  |  |  |  |  |  |  |  |  |
| 8200y0350 |  | CP89 | level of effort | 415d | 2012-06-14 A | 2014-02-07 A | 8200CPC365 | 100% |  | 2012-09-07 | 2013-10-26 |  |  |  |  |  |  |  |  |  |  |  |  | 820_AB | 4 | 2012-05-05 | 2012-05-05 | c89a | 2013-06-11 | 2013-06-11 | 16 |  |  |  |  |  |  |  |  |  |  |  |
| 8200y0370 |  | CP90 | level of effort | 485d | 2012-07-31 A | 2014-04-24 A | 8200CPC425 SS | 100% |  | 2012-08-31 | 2013-12-28 |  |  |  |  |  |  |  |  |  |  |  |  | 820_AB | 4 | 2012-06-07 | 2012-06-07 | c90a | 2013-07-12 | 2013-07-12 | 18 |  |  |  |  |  |  |  |  |  |  |  |
| 8200y0270 |  | CP85 | level of effort | 242d | 2012-08-20 A | 2013-09-16 A | 8200CPC105 SS | 100% |  | 2013-01-15 | 2013-09-13 |  |  |  |  |  |  |  |  |  |  |  |  | 820_AB | 4 | 2012-06-26 | 2012-06-26 | c85a | 2013-06-11 | 2013-06-11 | 8 |  |  |  |  |  |  |  |  |  |  |  |
| 8200y0250 |  | CP84 (XRL821) | level of effort | 278d | 2012-09-11 A | 2013-09-24 A | 8210CPC360 SS | 100% |  | 2013-04-06 | 2014-01-08 |  |  |  |  |  |  |  |  |  |  |  |  | 820_AB | 4 | 2012-07-22 | 2012-07-22 | c84a | 2013-07-13 | 2013-07-13 | 6 |  |  |  |  |  |  |  |  |  |  |  |
| 8200y0430 |  | CP93 | level of effort | 357d | 2012-09-28 A | 2014-06-09 A | 8200CPC675 SS | 100% |  | 2012-11-27 | 2013-11-18 |  |  |  |  |  |  |  |  |  |  |  |  | 820_AB | 4 | 2012-08-24 | 2012-08-24 | c93a | 2013-09-26 | 2013-09-26 | 24 |  |  |  |  |  |  |  |  |  |  |  |
| 8200y0440 |  | CP94 Fissure Grouting from Tunnel | level of effort | 135d | 2012-10-03 A | 2012-11-30 A | 8200CPC759b SS | 100% |  | 2012-12-31 | 2013-05-14 |  |  |  |  |  |  |  |  |  |  |  |  | 820_AB | 4 |  |  | c94 |  |  | 25 |  |  |  |  |  |  |  |  |  |  |  |
| 8200y0230 |  | CP83 (XRL821) | level of effort | 257d | 2012-10-18 A | 2013-10-25 A | 8210CPC260 SS | 100% |  | 2013-05-11 | 2014-01-22 |  |  |  |  |  |  |  |  |  |  |  |  | 820_AB | 4 | 2012-08-18 | 2012-08-18 | c83a | 2013-08-01 | 2013-08-01 | 4 |  |  |  |  |  |  |  |  |  |  |  |
| 8200y0290 |  | CP86 | level of effort | 241d | 2012-10-22 A | 2013-09-13 A | 8200CPC170 SS | 100% |  | 2012-12-15 | 2013-08-12 |  |  |  |  |  |  |  |  |  |  |  |  | 820_AB | 4 | 2012-05-16 | 2012-05-16 | c86a | 2013-05-06 | 2013-05-06 | 10 |  |  |  |  |  |  |  |  |  |  |  |
| 8200y0390 |  | CP91 | level of effort | 352d | 2012-10-24 A | 2014-05-08 A | 8200CPC510 SS | 100% |  | 2012-10-31 | 2013-10-17 |  |  |  |  |  |  |  |  |  |  |  |  | 820_AB | 4 | 2012-07-01 | 2012-07-01 | c91a | 2013-08-04 | 2013-08-04 | 20 |  |  |  |  |  |  |  |  |  |  |  |
| 8200y0410 |  | CP92 | level of effort | 370d | 2012-11-09 A | 2014-05-26 A | 8200CPC585 SS | 100% |  | 2012-10-31 | 2013-11-04 |  |  |  |  |  |  |  |  |  |  |  |  | 820_AB | 4 | 2012-07-30 | 2012-07-30 | c92a | 2013-09-01 | 2013-09-01 | 22 |  |  |  |  |  |  |  |  |  |  |  |
| 8200y0210 |  | CP82 (XRL821) | level of effort | 239d | 2012-11-12 A | 2013-11-02 A | 8210CPC120 SS | 100% |  | 2013-07-23 | 2014-03-18 |  |  |  |  |  |  |  |  |  |  |  |  | 820_AB | 4 | 2012-09-13 | 2012-09-13 | c82a | 2013-08-28 | 2013-08-28 | 2 |  |  |  |  |  |  |  |  |  |  |  |
| 8200y0450 |  | CP94 | level of effort | 241.58d | 2012-11-14 A | 2014-07-30 A | 8200CPC760 SS | 100% |  | 2013-05-25 | 2014-01-21 |  |  |  |  |  |  |  |  |  |  |  |  | 820_AB | 4 | 2012-10-13 | 2012-10-13 | c94a | 2013-11-11 | 2013-11-11 | 26 |  |  |  |  |  |  |  |  |  |  |  |
| 8200y0470 |  | CP95 & pump Sump | level of effort | 240.58d | 2012-12-24 A | 2015-05-31 | 8200CPC820 SS | 100% | 0d | 2013-07-24 | 2014-03-21 | 367d | 0d |  |  |  |  |  |  |  |  |  |  | 820_AB | 4 | 2012-11-23 | 2012-11-23 | c95a | 2013-12-17 | 2013-12-17 | 28 |  |  |  |  |  |  |  |  |  |  |  |
| 8200y0205 |  | CP81 (XRL821) | level of effort | 30d | 2013-03-04 A | 2013-12-30 A |  | 100% |  | 2013-03-04 | 2013-04-02 |  |  |  |  |  |  |  |  |  |  |  |  | 820_AB | 4 | 2012-10-08 | 2012-10-08 | c82a | 2013-09-19 | 2013-09-19 | 0 |  |  |  |  |  |  |  |  |  |  |  |
| 8200y0490 |  | CP96 | level of effort | 52d | 2014-10-31 A | 2014-10-31 A |  | 100% |  | 2014-09-30 | 2014-11-20 |  |  |  |  |  |  |  |  |  |  |  |  | 820_AB | 4 | 2012-12-12 | 2012-12-12 | c96a | 2014-01-06 | 2014-01-06 | 30 |  |  |  |  |  |  |  |  |  |  |  |
| 8200y0510 |  | CP97 | level of effort | 10d | 2014-12-31 A | 2014-12-31 A |  | 100% |  | 2014-11-30 | 2014-12-09 |  |  |  |  |  |  |  |  |  |  |  |  | 820_AB | 4 | 2013-01-11 | 2013-01-11 | c97a | 2014-02-05 | 2014-02-05 | 32 |  |  |  |  |  |  |  |  |  |  |  |

| ID | WBS | Activity | Type | Duration | Start | Finish | Predecessors | Complete | Planned start | Planned finish | Calendar | Resources | Responsible by | LEVEL 1 | LEVEL 2 | LEVEL 3 | Contracts | Cost Centre | Phases of Works | 820_As-built | SUMMARY | Works Area | Location of Works | Sub-locationof Works | Classification of Works | QUANTITY | User Start 2 | User Finish 2 | Production Rate | Classify | Priority A | Intrafor Finish | Sum1 | SUM2 | Intrafor Start | Order | TS & TN | TBM DT s | TBM DT f | TBM UT f | TBM UT s |
| --- | --- | --- | --- | --- | --- | --- | --- | --- | --- | --- | --- | --- | --- | --- | --- | --- | --- | --- | --- | --- | --- | --- | --- | --- | --- | --- | --- | --- | --- | --- | --- | --- | --- | --- | --- | --- | --- | --- | --- | --- | --- |
|  | 10 | **TTM Scheme Submission & Approval** |  |  | 2010-06-08 | 2011-04-26 |  |  |  |  |  |  |  |  |  |  |  |  |  |  |  |  |  |  |  |  |  |  |  |  |  |  |  |  |  |  |  |  |  |  |  |
| 8200TMC360 |  | XP Application & Approval |  | 31d | 2010-06-08 A | 2010-07-08 A | 8200TMC320 SS+30d | 100% | 2011-06-19 | 2011-07-19 |  |  | HCh | CC C | CROSS PASS | TTMS/AP | 820 | C | C040 | 820_AB |  |  |  |  |  |  |  |  |  |  |  |  |  |  |  |  |  |  |  |  |  |
| 8200TMC310 |  | Prepare Temporary Traffic Management |  | 26d | 2010-06-29 A | 2010-07-29 A | 8200KD1020 FS+48d | 100% | 2011-01-31 | 2011-03-01 | Cal 3 |  | HCh | CC C | CROSS PASS | TTMS/AP | 820 | C | C040 | 820_AB | TTMS AP |  |  |  |  |  |  |  |  |  |  |  |  |  |  |  |  |  |  |  |  |
| 8200TMC320 |  | TTM reviewed by SLG |  | 7d | 2010-07-30 A | 2010-08-05 A | 8200TMC310 | 100% | 2011-03-02 | 2011-03-08 |  |  | HCh | CC C | CROSS PASS | TTMS/AP | 820 | C | C040 | 820_AB | TTMS AP |  |  |  |  |  |  |  |  |  |  |  |  |  |  |  |  |  |  |  |  |
| 8200TMC350 |  | Notification to RMO |  | 18d | 2011-02-21 A | 2011-02-28 A | 8200TMC320 | 100% | 2011-06-19 | 2011-07-06 |  |  | HCh | CC C | CROSS PASS | TTMS/AP | 820 | C | C040 | 820_AB | TTMS AP |  |  |  |  |  |  |  |  |  |  |  |  |  |  |  |  |  |  |  |  |
| 8200TMC370 |  | Implement TTM | milestone | 0d | 2011-04-26 A | 2011-04-26 A | 8200TMC360, 8200TMC350 | 100% | 2011-06-19 | 2011-06-19 |  |  | HCh | CC C | CROSS PASS | TTMS/AP | 820 | C | C040 | 820_AB | TTMS AP |  |  |  |  |  |  |  |  |  |  |  |  |  |  |  |  |  |  |  |  |
|  | 1 | **CP81 (XRL821)** |  |  | 2013-02-21 | 2015-01-07 |  |  |  |  |  |  |  |  |  |  |  |  |  |  |  |  |  |  |  |  |  |  |  |  |  |  |  |  |  |  |  |  |  |  |  |
| 8210CPC310 |  | Segment Dismantle (DT) |  | 6d | 2013-02-21 A | 2013-02-24 A | 8210CPC300a, 8210CPC150 | 100% | 2013-03-11 | 2013-03-16 | Cal9(N)CP81(+235m) | Other Skill Labour (Civil) [96 h] |  | CC C | CROSS PASS | CP81 | 820 | C | C090 | 820_AB | 1 | 10.2 | 2030 | CP | EPIW |  |  |  |  |  |  |  |  |  |  |  |  |  |  |  |  |
| 8210CPC440 |  | Cross Passage Excavation & Temp.Support (from UT) |  | 6d | 2013-02-23 A | 2013-04-07 A | 8210CPC430 | 100% | 2013-02-23 | 2013-03-01 | Cal9(N)CP81(+235m) | Drilling Jumbo [4 h]; Other Skill Labour (Civil) [96 h]; Plant Operator [32 h] |  | CC C | CROSS PASS | CP81 | 820 | C | C090 | 820_AB | 1 | 10.2 | 2030 | CP | EPIW | 2m |  |  |  |  |  |  |  |  |  |  |  |  |  |  |  |
| 8210CPC145 |  | CP81 Preparation works for Grouting |  | 24d | 2013-03-04 A | 2013-03-06 A | 8200TBC830 SS+17d, 8200TBC819a FS+94d | 100% | 2013-03-04 | 2013-04-02 | Cal9(N)CP81(+235m) | Plant Operator [384 h]; Other Skill Labour (Civil) [384 h]; Drilling Rig [60 h] |  | CC C | CROSS PASS | CP81 | 820 | C | C090 | 820_AB | 1 | 10.2 | 2030 | CP | EPIW | Ch136+101 | 2013-02-27 | 2013-05-15 | 11+2weeks | CP | 3 | 2013-05-15 | c82 | S | 2013-02-27 | 0 | N |  |  |  |  |
| 8210CPC150 |  | CP81 Fissure Grouting from Tunnel |  | 60d | 2013-03-04 A | 2013-03-06 A | 8210CPC145, 8200TBC830 SS+16d, 8200TBC819a FS+27d | 100% | 2013-03-04 | 2013-05-16 | Cal9(N)CP81(+235m) | Plant Operator [960 h]; Other Skill Labour (Civil) [960 h]; Drilling Rig [60 h] |  | CC C | CROSS PASS | CP81 | 820 | C | C090 | 820_AB | 1 | 10.2 | 2030 | CP | EPIW | Ch136+101 | 2013-02-27 | 2013-05-15 | 11+2weeks | CP | 3 | 2013-05-15 | c82 | S | 2013-02-27 | 0 | N |  |  |  |  |
| 8210CPC300a |  | Probing/Drainage (from DT) |  | 3d | 2013-03-11 A | 2013-03-16 A | 8210CPC150 | 100% | 2013-03-11 | 2013-03-13 | Cal9(N)CP81(+235m) | Other Skill Labour (Civil) [48 h] |  | CC C | CROSS PASS | CP81 | 820 | C | C090 | 820_AB | 1 | 10.2 | 2030 | CP | EPIW |  |  |  | 2W+10d |  |  |  |  |  |  |  |  |  |  |  |  |
| 8210CPC320a |  | Tunnel Frame Support (DT) |  | 6d | 2013-03-11 A | 2013-03-16 A | 8210CPC310 | 100% |  |  | Cal9(N)CP81(+235m) | Other Skill Labour (Civil) [96 h] |  | CC C | CROSS PASS | CP81 | 820 | C | C090 | 820_AB | 1 | 10.2 | 2030 | CP | EPIW |  |  |  |  |  |  |  |  |  |  |  |  |  |  |  |  |
| 8210CPC325 |  | Mobilization (UT) |  | 3d | 2013-11-11 A | 2013-11-12 A | 8200TBC679a FS+24d, 8210CPC320a, 8200TBC620 SS+14d | 100% | 2013-11-11 | 2013-11-13 | Cal9(N)CP81(+235m) | Other Skill Labour (Civil) [48 h]; Drilling Rig [3 h] |  | CC C | CROSS PASS | CP81 | 820 | C | C090 | 820_AB | 1 | 10.2 | 2030 | CP | EPIW |  |  |  | 2W+10d |  |  |  |  |  |  |  |  |  |  |  |  |
| 8210CPC330 |  | Probing/Drainage (from UT) |  | 6d | 2013-11-13 A | 2013-11-14 A | 8210CPC325, 8200TBC679a FS+27d | 100% | 2013-11-13 | 2013-11-19 | Cal9(N)CP81(+235m) | Other Skill Labour (Civil) [96 h]; Drilling Rig [3 h] |  | CC C | CROSS PASS | CP81 | 820 | C | C090 | 820_AB | 1 | 10.2 | 2030 | CP | EPIW |  |  |  | 2W+10d |  |  |  |  |  |  |  |  |  |  |  |  |
| 8210CPC430 |  | Segment Dismantle (UT) |  | 6d | 2013-11-21 A | 2013-11-26 A | 8210CPC330 | 100% | 2013-11-15 | 2013-11-21 | Cal9(N)CP81(+235m) | Other Skill Labour (Civil) [96 h] |  | CC C | CROSS PASS | CP81 | 820 | C | C090 | 820_AB | 1 | 10.2 | 2030 | CP | EPIW | 136+114 |  |  | 11d+2W |  |  |  |  |  |  |  |  |  |  |  |  |
| 8210CPC450 |  | Waterproofing |  | 9d | 2013-12-18 A | 2013-12-20 A | 8210CPC440 | 100% | 2013-11-19 | 2013-11-28 | Cal9(N)CP81(+235m) | Other Skill Labour (Civil) [144 h] |  | CC C | CROSS PASS | CP81 | 820 | C | C090 | 820_AB | 1 | 10.2 | 2030 | CP | EPIW |  |  |  |  |  |  |  |  |  |  |  |  |  |  |  |  |
| 8210CPC470a |  | Permanent Slab |  | 6d | 2013-12-30 A | 2013-12-30 A | 8210CPC465, 8210CPC460a, 8200y0205 FF | 100% | 2013-11-25 | 2013-11-30 | Cal9(N)CP81(+235m) | Other Skill Labour (Civil) [192 h] |  | CC C | CROSS PASS | CP81 | 820 | C | C090 | 820_AB | 1 | 10.2 | 2030 | CP | EPIW |  |  |  |  |  |  |  |  |  |  |  |  |  |  |  |  |
| 8210CPC460a |  | Permanent Beam |  | 9d | 2014-01-04 A | 2014-01-04 A | 8210CPC450 | 100% | 2014-01-04 | 2014-01-14 | Cal9(N)CP81(+235m) | Concretor [144 h]; Carpenter [144 h]; Steel Fixer [144 h]; Other Skill Labour (Civil) [144 h] |  | CC C | CROSS PASS | CP81 | 820 | C | C090 | 820_AB | 1 | 10.2 | 2030 | CP | EPIW |  |  |  |  |  |  |  |  |  |  |  |  |  |  |  |  |
| 8210CPC465 |  | Permanent Lining |  | 6d | 2015-01-07 A | 2015-01-07 A | 8210CPC460a | 100% | 2015-01-07 | 2015-01-13 | Cal9(N)CP81(+235m) | Other Skill Labour (Civil) [192 h] |  | CC C | CROSS PASS | CP81 | 820 | C | C090 | 820_AB | 1 | 10.2 | 2030 | CP | EPIW |  |  |  |  |  |  |  |  |  |  |  |  |  |  |  |  |
|  | 20 | **CP82 (XRL821)** |  |  | 2012-11-06 | 2013-11-07 |  |  |  |  |  |  |  |  |  |  |  |  |  |  |  |  |  |  |  |  |  |  |  |  |  |  |  |  |  |  |  |  |  |  |  |
| 8210CPC105 |  | CP82 Preparation works for Grouting |  | 24d | 2012-11-06 A | 2012-11-09 A | 8200TBC830 SS+34d, 8200TBC818c1 FS+27d | 100% | 2012-12-15 | 2013-01-16 | Cal9(N) (+235m) | Plant Operator [480 h]; Other Skill Labour (Civil) [2880 h]; Drilling Rig [60 h] | DJa | CC C | CROSS PASS | CP82 | 820 | C | C090 | 820_AB | 1 | 10.2 | 2030 | CP | EPIW | Ch136+101 | 2013-02-27 | 2013-05-15 | 11+2weeks | CP | 3 | 2013-05-15 | c82 | S | 2013-02-27 | 1 | N |  |  |  |  |
| 8210CPC140 |  | Segment Dismantle (DT) |  | 6d | 2012-11-10 A | 2012-11-21 A | 8200sum100 FF, 8210CPC120 | 100% | 2012-12-15 | 2012-12-22 | Cal9(N) (+235m) | Other Skill Labour (Civil) [288 h] | DJa | CC C | CROSS PASS | CP82 | 820 | C | C090 | 820_AB | 1 | 10.2 | 2030 | CP | EPIW |  |  |  |  |  |  |  |  |  |  |  |  |  |  |  |  |
| 8200sum070 |  | CP82 (XRL821) | level of effort | 189d | 2012-11-12 A | 2013-11-07 A | 8210CPC120 SS | 100% | 2013-07-23 | 2014-03-18 | Cal9(N)b |  |  |  |  |  |  |  |  | 820_AB |  |  |  |  |  |  |  |  |  |  | 4 |  | c82a |  |  |  |  | 2012-10-12 | 2012-10-12 | 2013-10-22 | 2013-10-22 |
| 8210CPC110 |  | CP82 Fissure Grouting from Tunnel |  | 60d | 2012-11-12 A | 2012-12-08 A | 8200TBC818c1 FS+27d, 8200TBC830 SS+25d, 8210CPC105 | 100% | 2012-12-15 | 2013-03-05 | Cal9(N) (+235m) | Plant Operator [480 h]; Other Skill Labour (Civil) [2880 h]; Drilling Rig [60 h] | DJa | CC C | CROSS PASS | CP82 | 820 | C | C090 | 820_AB | 1 | 10.2 | 2030 | CP | EPIW | Ch136+101 | 2013-02-27 | 2013-05-15 | 11+2weeks | CP | 3 | 2013-05-15 | c82 | S | 2013-02-27 | 1 | N |  |  |  |  |
| 8210CPC120 |  | Probing/Drainage (DT) |  | 6d | 2012-11-12 A | 2012-11-17 A | 8210CPC110, 8210CPC105 | 100% | 2012-12-15 | 2012-12-22 | Cal9(N) (+235m) | Other Skill Labour (Civil) [288 h]; Drilling Rig [6 h] | DJa | CC C | CROSS PASS | CP82 | 820 | C | C090 | 820_AB | 1 | 10.2 | 2030 | CP | EPIW |  |  |  |  |  |  |  |  |  |  |  |  |  |  |  |  |
| 8210CPC160 |  | Cross Passage Excavation & Temp.Support (from DT) |  | 12d | 2013-03-12 A | 2013-03-23 A | 8210CPC140 | 100% | 2013-03-12 | 2013-03-25 | Cal9(N) (+235m) | Plant Operator [112 h]; Drilling Jumbo [14 h]; Other Skill Labour (Civil) [192 h] | DJa | CC C | CROSS PASS | CP82 | 820 | C | C090 | 820_AB | 1 | 10.2 | 2030 | CP | EPIW | 8.64mx14.5m2=125.3m3 |  |  | 0.5m/d |  |  |  |  |  |  |  |  |  |  |  |  |
| 8210CPC200 |  | Cross Passage Excavation & Temp.Support (from UT) |  | 8d | 2013-03-12 A | 2013-03-23 A | 8210CPC160c, 8210CPC190, 8210CPC160 | 100% | 2013-03-12 | 2013-03-20 | Cal9(N) (+235m) | Drilling Jumbo [4 h]; Other Skill Labour (Civil) [128 h]; Plant Operator [64 h] | DJa | CC C | CROSS PASS | CP82 | 820 | C | C090 | 820_AB | 1 | 10.2 | 2030 | CP | EPIW | 2m |  |  |  |  |  |  |  |  |  |  |  |  |  |  |  |
| 8210CPC160b |  | Waterproofing (DT) |  | 9d | 2013-04-06 A | 2013-04-08 A | 8210CPC160 | 100% | 2013-03-25 | 2013-04-06 | Cal9(N) (+235m) | Other Skill Labour (Civil) [144 h] | DJa | CC C | CROSS PASS | CP82 | 820 | C | C090 | 820_AB | 1 | 10.2 | 2030 | CP | EPIW | 8.64mx14.5m2=125.3m3 |  |  | 0.5m/d |  |  |  |  |  |  |  |  |  |  |  |  |
| 8210CPC160c |  | Permanent Beam (DT) |  | 9d | 2013-04-18 A | 2013-04-23 A | 8210CPC160b | 100% | 2013-04-08 | 2013-04-18 | Cal9(N) (+235m) | Other Skill Labour (Civil) [144 h]; Plant Operator [112 h] | DJa | CC C | CROSS PASS | CP82 | 820 | C | C090 | 820_AB | 1 | 10.2 | 2030 | CP | EPIW | 8.64mx14.5m2=125.3m3 |  |  | 0.5m/d |  |  |  |  |  |  |  |  |  |  |  |  |
| 8210CPC190 |  | Segment Dismantle (UT) |  | 6d | 2013-10-11 A | 2013-10-17 A | 8200TBC680, 8210CPC170 | 100% | 2013-11-21 | 2013-11-27 | Cal9(N) (+235m) | Other Skill Labour (Civil) [192 h] | DJa | CC C | CROSS PASS | CP82 | 820 | C | C090 | 820_AB | 1 | 10.2 | 2030 | CP | EPIW | 136+114 |  |  | 11d+2W |  |  |  |  |  |  |  |  |  |  |  |  |
| 8210CPC170 |  | Probing/Drainage (UT) |  | 6d | 2013-10-15 A | 2013-10-18 A | 8200TBC678c1 FS+23d | 100% | 2013-11-21 | 2013-11-27 | Cal9(N) (+235m) | Other Skill Labour (Civil) [96 h]; Drilling Rig [3 h] | DJa | CC C | CROSS PASS | CP82 | 820 | C | C090 | 820_AB | 1 | 10.2 | 2030 | CP | EPIW |  |  |  | 2W+10d |  |  |  |  |  |  |  |  |  |  |  |  |
| 8210CPC210 |  | Waterproofing (UT) |  | 9d | 2013-10-21 A | 2013-10-22 A | 8210CPC200 | 100% | 2013-11-21 | 2013-11-30 | Cal9(N) (+235m) | Other Skill Labour (Civil) [288 h] | DJa | CC C | CROSS PASS | CP82 | 820 | C | C090 | 820_AB | 1 | 10.2 | 2030 | CP | EPIW |  |  |  |  |  |  |  |  |  |  |  |  |  |  |  |  |
| 8210CPC220c |  | Permanent Slab |  | 6d | 2013-10-21 A | 2013-10-24 A | 8210CPC220a, 8200sum070 FF, 8210CPC220b, 8200y0210 FF | 100% | 2013-11-21 | 2013-11-27 | Cal9(N) (+235m) | Other Skill Labour (Civil) [192 h] | DJa | CC C | CROSS PASS | CP82 | 820 | C | C090 | 820_AB | 1 | 10.2 | 2030 | CP | EPIW |  |  |  |  |  |  |  |  |  |  |  |  |  |  |  |  |
| 8210CPC220a |  | Permanent Beam (UT) |  | 9d | 2013-10-25 A | 2013-10-28 A | 8210CPC210 | 100% | 2013-11-21 | 2013-11-30 | Cal9(N) (+235m) | Concretor [144 h]; Steel Fixer [144 h]; Other Skill Labour (Civil) [144 h]; Carpenter [144 h] | DJa | CC C | CROSS PASS | CP82 | 820 | C | C090 | 820_AB | 1 | 10.2 | 2030 | CP | EPIW |  |  |  |  |  |  |  |  |  |  |  |  |  |  |  |  |
| 8210CPC220b |  | Permanent Lining |  | 6d | 2013-10-28 A | 2013-10-30 A | 8210CPC210, 8210CPC220a | 100% | 2013-11-21 | 2013-11-27 | Cal9(N) (+235m) | Concretor [96 h]; Carpenter [96 h]; Steel Fixer [96 h]; Other Skill Labour (Civil) [96 h] | DJa | CC C | CROSS PASS | CP82 | 820 | C | C090 | 820_AB | 1 | 10.2 | 2030 | CP | EPIW |  |  |  |  |  |  |  |  |  |  |  |  |  |  |  |  |

Notes:
- 8210CPC440: Basis & Assumptions: assume 3m long
- 8210CPC145: Basis & Assumptions: 135+851,135+863 & 6m ; / Grouting wks. are assumed to start after invert const'n & 2 weeks / later. / (135851-135737)/ 20m/d =5.7d >>6d
- 8210CPC150: Basis & Assumptions: 135+851,135863 &6m ; / Grouting wks. are assumed to start after invert const'n & 2 weeks / later.
- 8210CPC105: Basis & Assumptions: 136+101,136+114 &16m
- 8210CPC110: Basis & Assumptions: 136+101,136+114 &16m
- 8210CPC160: Basis & Assumptions: 9.62m
- 8210CPC160b: Basis & Assumptions: 9.62m
- 8210CPC160c: Basis & Assumptions: 9.62m

| ID | WBS | Activity | Type | Duration | Start | Finish | Predecessors | Complete | Planned start | Planned finish | Calendar | Resources | User Start 2 | User Finish 2 | Production Rate | QUANTITY | Responsible by | Classify | Priority A | Intrafor Finish | Sum1 | SUM2 | Intrafor Start | Order | LEVEL 1 | LEVEL 2 | LEVEL 3 | SUMMARY | TS & TN | Contracts | Cost Centre | Works Area | Location of Works | Sub-locationof Works | Phases of Works | Classification of Works | 820_As-built | TBM DT s | TBM DT f | TBM UT f | TBM UT s |
| --- | --- | --- | --- | --- | --- | --- | --- | --- | --- | --- | --- | --- | --- | --- | --- | --- | --- | --- | --- | --- | --- | --- | --- | --- | --- | --- | --- | --- | --- | --- | --- | --- | --- | --- | --- | --- | --- | --- | --- | --- | --- |
|  | 30 | **CP83 (XRL821)** |  |  | 2012-10-03 | 2013-10-25 |  |  |  |  |  |  |  |  |  |  |  |  |  |  |  |  |  |  |  |  |  |  |  |  |  |  |  |  |  |  |  |  |  |  |  |
| 8210CPC245a |  | CP83 Preparation works for Grouting |  | 24d | 2012-10-03 A | 2012-10-10 A | 8200TBC818b1 FS+27d | 100% | 2012-10-03 | 2012-12-15 | Cal9(N) (+235m) | Other Skill Labour (Civil) [2880 h]; Drilling Rig [60 h]; Plant Operator [480 h] | 2013-03-08 | 2013-05-27 | 19d+2W | Ch136+351 | DJa | CP | 3 | 2011-05-27 | c83 | S | 2013-03-08 | 3 | CC C | CROSS PASS | CP83 | 1 | N | 820 | C | 10.2 | 2030 | CP | C090 | EPIW | 820_AB |  |  |  |  |
| 8210CPC245b |  | CP83 Re-setup for Grouting |  | 3d | 2012-10-08 A | 2012-10-10 A | 8210CPC245a, 8200TBC825, 8200TBC818b1 FS+27d | 100% |  |  | Cal9(N) (+235m) | Other Skill Labour (Civil) [32 h]; Drilling Rig [60 h]; Plant Operator [480 h] | 2013-03-08 | 2013-05-27 | 19d+2W | Ch136+351 | DJa | CP | 3 | 2011-05-27 | c83 | S | 2013-03-08 | 3 | CC C | CROSS PASS | CP83 | 1 | N | 820 | C | 10.2 | 2030 | CP | C090 | EPIW | 820_AB |  |  |  |  |
| 8210CPC250a |  | CP83 Fissure Grouting from Tunnel Part I |  | 46d | 2012-10-11 A | 2012-10-17 A | 8200TBC818b1 FS+27d, 8210CPC245b, 8210CPC245a | 100% | 2012-10-11 | 2013-01-23 | Cal9(N) (+235m) | Other Skill Labour (Civil) [2880 h]; Drilling Rig [60 h]; Plant Operator [480 h] | 2013-03-08 | 2013-05-27 | 19d+2W | Ch136+351 | DJa | CP | 3 | 2011-05-27 | c83 | S | 2013-03-08 | 3 | CC C | CROSS PASS | CP83 | 1 | N | 820 | C | 10.2 | 2030 | CP | C090 | EPIW | 820_AB |  |  |  |  |
| 8210CPC250b |  | CP83 Fissure Grouting from Tunnel Part II |  | 14d | 2012-10-11 A | 2012-10-17 A | 8200TBC830 SS+51d, 8210CPC250a, 8200TBC818b1 FS+27d, 8210CPC245b, 8210CPC245a | 100% | 2012-10-11 | 2012-10-27 | Cal9(N) (+235m) | Other Skill Labour (Civil) [2880 h]; Drilling Rig [60 h]; Plant Operator [480 h] | 2013-03-08 | 2013-05-27 | 19d+2W | Ch136+351 | DJa | CP | 3 | 2011-05-27 | c83 | S | 2013-03-08 | 3 | CC C | CROSS PASS | CP83 | 1 | N | 820 | C | 10.2 | 2030 | CP | C090 | EPIW | 820_AB |  |  |  |  |
| 8210CPC260 |  | Probing/Drainage (DT) |  | 6d | 2012-10-15 A | 2012-10-16 A | 8210CPC250b, 8210CPC250a, 8210CPC245a, 8210CPC245b | 100% | 2012-10-18 | 2012-10-25 | Cal9(N) (+235m) | Drilling Rig [6 h]; Other Skill Labour (Civil) [288 h] |  |  |  |  | DJa |  |  |  |  |  |  |  | CC C | CROSS PASS | CP83 | 1 |  | 820 | C | 10.2 | 2030 | CP | C090 | EPIW | 820_AB |  |  |  |  |
| 8210CPC280 |  | Segment Dismantle (DT) |  | 6d | 2012-10-15 A | 2012-10-16 A | 8210CPC260 | 100% | 2012-10-18 | 2012-10-25 | Cal9(N) (+235m) | Other Skill Labour (Civil) [288 h] |  |  |  |  | DJa |  |  |  |  |  |  |  | CC C | CROSS PASS | CP83 | 1 |  | 820 | C | 10.2 | 2030 | CP | C090 | EPIW | 820_AB |  |  |  |  |
| 8200sum080 |  | CP83 (XRL821) | level of effort | 202d | 2012-10-18 A | 2013-10-25 A | 8210CPC260 SS | 100% | 2013-05-11 | 2014-01-22 | Cal9(N)b |  |  |  |  |  |  |  | 4 |  | c83a |  |  |  |  |  |  |  |  |  |  |  |  |  |  |  | 820_AB | 2012-09-14 | 2012-09-14 | 2013-09-26 | 2013-09-26 |
| 8210CPC290a |  | Cross Passage Excavation & Temp.Support (from DT) |  | 46d | 2012-10-19 A | 2013-03-16 A | 8210CPC280 | 100% | 2012-10-19 | 2013-01-31 | Cal9(N) (+235m) | Drilling Jumbo [8 h]; Other Skill Labour (Civil) [1920 h]; Plant Operator [320 h] |  |  | 0.5m/d | 22.15mx14.5m2=321.2m3 | DJa |  |  |  |  |  |  |  | CC C | CROSS PASS | CP83 | 1 |  | 820 | C | 10.2 | 2030 | CP | C090 | EPIW | 820_AB |  |  |  |  |
| 8210CPC290d |  | Waterproofing (DT) |  | 6d | 2013-04-02 A | 2013-04-04 A | 8210CPC290a | 100% | 2013-03-18 | 2013-03-23 | Cal9(N) (+235m) | Other Skill Labour (Civil) [96 h] |  |  | 0.5m/d | 8.64mx14.5m2=125.3m3 | DJa |  |  |  |  |  |  |  | CC C | CROSS PASS | CP82 | 1 |  | 820 | C | 10.2 | 2030 | CP | C090 | EPIW | 820_AB |  |  |  |  |
| 8210CPC290e |  | Permanent Beam (DT) |  | 9d | 2013-04-09 A | 2013-04-11 A | 8210CPC290d | 100% | 2013-03-25 | 2013-04-06 | Cal9(N) (+235m) | Drilling Jumbo [14 h]; Other Skill Labour (Civil) [144 h] |  |  | 0.5m/d | 8.64mx14.5m2=125.3m3 | DJa |  |  |  |  |  |  |  | CC C | CROSS PASS | CP82 | 1 |  | 820 | C | 10.2 | 2030 | CP | C090 | EPIW | 820_AB |  |  |  |  |
| 8210CPC292 |  | Probing/Drainage (UT) |  | 6d | 2013-09-25 A | 2013-10-03 A | 8210CPC290e, 8200TBC678b1 FS+23d | 100% | 2013-10-02 | 2013-11-22 | Cal9(N) (+235m) | Drilling Rig [3 h]; Other Skill Labour (Civil) [96 h] |  |  |  | Ch136+365 >>136+165 | DJa |  |  |  |  |  |  |  | CC C | CROSS PASS | CP83 | 1 |  | 820 | C | 10.2 | 2030 | CP | C090 | EPIW | 820_AB |  |  |  |  |
| 8210CPC480 |  | Segment Dismantle (UT) |  | 6d | 2013-09-25 A | 2013-10-03 A | 8210CPC292 | 100% | 2013-11-21 | 2013-11-27 | Cal9(N) (+235m) | Other Skill Labour (Civil) [192 h] |  |  |  |  | DJa |  |  |  |  |  |  |  | CC C | CROSS PASS | CP83 | 1 |  | 820 | C | 10.2 | 2030 | CP | C090 | EPIW | 820_AB |  |  |  |  |
| 8210CPC482 |  | Cross Passage Excavation & Temp.Support (from UT) |  | 8d | 2013-10-04 A | 2013-10-08 A | 8210CPC480, 8210CPC290e, 8210CPC290a | 100% | 2013-02-23 | 2013-03-04 | Cal9(N) (+235m) | Other Skill Labour (Civil) [128 h]; Plant Operator [32 h]; Drilling Jumbo [4 h] |  |  |  | 2m | DJa |  |  |  |  |  |  |  | CC C | CROSS PASS | CP83 | 1 |  | 820 | C | 10.2 | 2030 | CP | C090 | EPIW | 820_AB |  |  |  |  |
| 8210CPC484 |  | Waterproofing (UT) |  | 9d | 2013-10-08 A | 2013-10-10 A | 8210CPC482 | 100% | 2013-11-21 | 2013-11-30 | Cal9(N) (+235m) | Other Skill Labour (Civil) [144 h] |  |  |  |  | DJa |  |  |  |  |  |  |  | CC C | CROSS PASS | CP83 | 1 |  | 820 | C | 10.2 | 2030 | CP | C090 | EPIW | 820_AB |  |  |  |  |
| 8210CPC488a |  | Permanent Slab |  | 6d | 2013-10-10 A | 2013-10-12 A | 8210CPC486a, 8200y0230 FF, 8200sum080 FF, 8210CPC486b | 100% | 2013-11-21 | 2013-11-27 | Cal9(N) (+235m) | Other Skill Labour (Civil) [192 h] |  |  |  |  | DJa |  |  |  |  |  |  |  | CC C | CROSS PASS | CP83 | 1 |  | 820 | C | 10.2 | 2030 | CP | C090 | EPIW | 820_AB |  |  |  |  |
| 8210CPC486a |  | Permanent Beam (UT) |  | 9d | 2013-10-15 A | 2013-10-17 A | 8210CPC484 FS+1d | 100% | 2013-11-21 | 2013-11-30 | Cal9(N) (+235m) | Concretor [144 h]; Carpenter [144 h]; Steel Fixer [144 h] |  |  | 19d+2w |  | DJa |  |  |  |  |  |  |  | CC C | CROSS PASS | CP83 | 1 |  | 820 | C | 10.2 | 2030 | CP | C090 | EPIW | 820_AB |  |  |  |  |
| 8210CPC486b |  | Permanent Lining |  | 6d | 2013-10-17 A | 2013-10-19 A | 8210CPC486a, 8210CPC484 | 100% | 2013-11-21 | 2013-11-27 | Cal9(N) (+235m) | Steel Fixer [96 h]; Concretor [96 h]; Carpenter [96 h] |  |  | 19d+2w |  | DJa |  |  |  |  |  |  |  | CC C | CROSS PASS | CP83 | 1 |  | 820 | C | 10.2 | 2030 | CP | C090 | EPIW | 820_AB |  |  |  |  |
|  | 40 | **CP84 (XRL821)** |  |  | 2012-09-03 | 2013-09-26 |  |  |  |  |  |  |  |  |  |  |  |  |  |  |  |  |  |  |  |  |  |  |  |  |  |  |  |  |  |  |  |  |  |  |  |
| 8210CPC345 |  | CP84 Preparation works for Grouting |  | 24d | 2012-09-03 A | 2012-09-10 A | 8200TBC818a1 FS+27d | 100% | 2012-09-03 | 2012-10-04 | Cal9(N) (+235m) | Drilling Rig [60 h]; Other Skill Labour (Civil) [2880 h]; Plant Operator [480 h] | 2012-09-13 | 2012-11-26 |  | Ch136+583>>136+383 | DJa | CP | 3 | 2012-11-26 | c84 | S | 2012-09-13 | 5 | CC C | CROSS PASS | CP84 | 1 | N | 820 | C | 10.2 | 2030 | CP | C090 | EPIW | 820_AB |  |  |  |  |
| 8200sum090 |  | CP84 (XRL821) | level of effort | 216d | 2012-09-11 A | 2013-09-26 A | 8210CPC360 SS | 100% | 2013-04-06 | 2014-01-08 | Cal9(N)b |  |  |  |  |  |  |  | 4 |  | c84a |  |  |  |  |  |  |  |  |  |  |  |  |  |  |  | 820_AB | 2012-08-19 | 2012-08-19 | 2013-09-01 | 2013-09-01 |
| 8210CPC350 |  | CP84 Fissure Grouting from Tunnel |  | 60d | 2012-09-11 A | 2012-09-18 A | 8200TBC818a1 FS+27d, 8210CPC345 | 100% | 2012-09-11 | 2013-01-12 | Cal9(N) (+235m) | Drilling Rig [60 h]; Other Skill Labour (Civil) [2880 h]; Plant Operator [480 h] | 2012-09-13 | 2012-11-26 |  | Ch136+583>>136+383 | DJa | CP | 3 | 2012-11-26 | c84 | S | 2012-09-13 | 5 | CC C | CROSS PASS | CP84 | 1 | N | 820 | C | 10.2 | 2030 | CP | C090 | EPIW | 820_AB |  |  |  |  |
| 8210CPC360 |  | Probing/Drainage (DT) |  | 6d | 2012-09-11 A | 2012-09-12 A | 8210CPC350, 8210CPC345, 8200TBC830 SS+36d | 100% | 2012-09-11 | 2012-09-17 | Cal9(N) (+235m) | Drilling Rig [6 h]; Other Skill Labour (Civil) [288 h] |  |  |  |  | DJa |  |  |  |  |  |  |  | CC C | CROSS PASS | CP84 | 1 |  | 820 | C | 10.2 | 2030 | CP | C090 | EPIW | 820_AB |  |  |  |  |
| 8210CPC370 |  | Segment Dismantle (DT) |  | 6d | 2012-09-13 A | 2012-09-14 A | 8210CPC360 | 100% | 2012-09-19 | 2012-09-26 | Cal9(N) (+235m) | Other Skill Labour (Civil) [288 h] |  |  |  |  | DJa |  |  |  |  |  |  |  | CC C | CROSS PASS | CP84 | 1 |  | 820 | C | 10.2 | 2030 | CP | C090 | EPIW | 820_AB |  |  |  |  |
| 8210CPC380 |  | Cross Passage Excavation & Temp.Support (from DT) |  | 37d | 2012-09-26 A | 2013-03-08 A | 8200TBC830 SS+67d, 8210CPC370 | 100% | 2012-09-26 | 2012-12-29 | Cal9(N) (+235m) | Drilling Jumbo [8 h]; Other Skill Labour (Civil) [1920 h] |  |  | 0.5m/d | 21.78mx14.5m2=315.8m3 | DJa |  |  |  |  |  |  |  | CC C | CROSS PASS | CP84 | 1 |  | 820 | C | 10.2 | 2030 | CP | C090 | EPIW | 820_AB |  |  |  |  |
| 8210CPC380b |  | Waterproofing (DT) |  | 9d | 2013-03-27 A | 2013-04-01 A | 8210CPC380 | 100% | 2013-03-18 | 2013-03-27 | Cal9(N) (+235m) | Drilling Jumbo [14 h]; Other Skill Labour (Civil) [144 h] |  |  | 0.5m/d | 8.64mx14.5m2=125.3m3 | DJa |  |  |  |  |  |  |  | CC C | CROSS PASS | CP82 | 1 |  | 820 | C | 10.2 | 2030 | CP | C090 | EPIW | 820_AB |  |  |  |  |
| 8210CPC380c |  | Permanent Beam (DT) |  | 9d | 2013-04-09 A | 2013-04-11 A | 8210CPC380b | 100% | 2013-03-25 | 2013-04-06 | Cal9(N) (+235m) | Other Skill Labour (Civil) [144 h]; Plant Operator [144 h]; Drilling Jumbo [14 h] |  |  | 0.5m/d | 8.64mx14.5m2=125.3m3 | DJa |  |  |  |  |  |  |  | CC C | CROSS PASS | CP82 | 1 |  | 820 | C | 10.2 | 2030 | CP | C090 | EPIW | 820_AB |  |  |  |  |
| 8210CPC382 |  | Probing/Drainage (UT) |  | 6d | 2013-08-16 A | 2013-08-30 A | 8200TBC678a1 FS+23d | 100% | 2013-08-26 | 2013-09-03 | Cal9(N) (+235m) | Drilling Rig [3 h]; Other Skill Labour (Civil) [96 h] |  |  |  | Ch136+598>>136+398 | DJa |  |  |  |  |  |  |  | CC C | CROSS PASS | CP84 | 1 |  | 820 | C | 10.2 | 2030 | CP | C090 | EPIW | 820_AB |  |  |  |  |
| 8210CPC386 |  | Segment Dismantle (UT) |  | 6d | 2013-08-16 A | 2013-08-30 A | 8210CPC382 | 100% | 2013-09-02 | 2013-09-07 | Cal9(N) (+235m) | Other Skill Labour (Civil) [192 h] |  |  |  |  | DJa |  |  |  |  |  |  |  | CC C | CROSS PASS | CP84 | 1 |  | 820 | C | 10.2 | 2030 | CP | C090 | EPIW | 820_AB |  |  |  |  |
| 8210CPC390 |  | Cross Passage Excavation & Temp.Support (from U/T) |  | 8d | 2013-08-31 A | 2013-09-02 A | 8210CPC380, 8210CPC380c, 8210CPC386 | 100% | 2013-09-04 | 2013-09-13 | Cal9(N) (+235m) | Drilling Jumbo [4 h]; Other Skill Labour (Civil) [128 h] |  |  |  | 2m | DJa |  |  |  |  |  |  |  | CC C | CROSS PASS | CP84 | 1 |  | 820 | C | 10.2 | 2030 | CP | C090 | EPIW | 820_AB |  |  |  |  |
| 8210CPC400 |  | Waterproofing (UT) |  | 9d | 2013-09-05 A | 2013-09-07 A | 8210CPC390 | 100% | 2014-09-11 | 2014-09-22 | Cal9(N) (+235m) | Other Skill Labour (Civil) [288 h] |  |  |  |  | DJa |  |  |  |  |  |  |  | CC C | CROSS PASS | CP84 | 1 |  | 820 | C | 10.2 | 2030 | CP | C090 | EPIW | 820_AB |  |  |  |  |
| 8210CPC420a |  | Permanent Slab |  | 6d | 2013-09-05 A | 2013-09-07 A | 8200sum090 FF, 8200y0250 FF, 8210CPC410b | 100% | 2013-09-16 | 2013-09-24 | Cal9(N) (+235m) | Other Skill Labour (Civil) [192 h] |  |  |  |  | DJa |  |  |  |  |  |  |  | CC C | CROSS PASS | CP84 | 1 |  | 820 | C | 10.2 | 2030 | CP | C090 | EPIW | 820_AB |  |  |  |  |
| 8210CPC410a |  | Permanent Beam (UT) |  | 9d | 2013-09-07 A | 2013-09-10 A | 8210CPC400 | 100% | 2013-09-14 | 2013-09-26 | Cal9(N) (+235m) | Steel Fixer [144 h]; Concretor [144 h]; Carpenter [144 h] |  |  |  |  | DJa |  |  |  |  |  |  |  | CC C | CROSS PASS | CP84 | 1 |  | 820 | C | 10.2 | 2030 | CP | C090 | EPIW | 820_AB |  |  |  |  |
| 8210CPC410b |  | Permanent Lining |  | 6d | 2013-09-10 A | 2013-09-12 A | 8210CPC410a | 100% | 2013-09-13 | 2013-09-21 | Cal9(N) (+235m) | Steel Fixer [96 h]; Concretor [96 h]; Carpenter [96 h] |  |  |  |  | DJa |  |  |  |  |  |  |  | CC C | CROSS PASS | CP84 | 1 |  | 820 | C | 10.2 | 2030 | CP | C090 | EPIW | 820_AB |  |  |  |  |

Notes:
- 8210CPC245a: Basis & Assumptions: 136+351,136365 &24m
- 8210CPC245b: Basis & Assumptions: 136+351,136365 &24m
- 8210CPC250a: Basis & Assumptions: 136+351,136365 &24m
- 8210CPC250b: Basis & Assumptions: 136+351,136365 &24m
- 8210CPC290a: Basis & Assumptions: 23.08m , / TBM arrival at UT on 31Jul13 (assume Excavtion will be stopped 2 weeks / before TBM come.....will stop on 24Jul13)
- 8210CPC290d: Basis & Assumptions: 9.62m
- 8210CPC290e: Basis & Assumptions: 9.62m
- 8210CPC345: Basis & Assumptions: 136+601,136616 &20m
- 8210CPC350: Basis & Assumptions: 136+601,136616 &20m
- 8210CPC380: Basis & Assumptions: 22.14m / ,136+601-135+737=864m>>57.6d+12d=69.6>>70d
- 8210CPC380b: Basis & Assumptions: 9.62m
- 8210CPC380c: Basis & Assumptions: 9.62m

| ID | WBS | Activity | Type | Duration | Start | Finish | Predecessors | Complete | Planned start | Planned finish | Calendar | Resources | Responsible by | Classify | Priority A | Intrafor Finish | Intrafor Start | LEVEL 1 | LEVEL 2 | LEVEL 3 | TS & TN | Responsible (bm makes Global) | 820_As-built | User Start 2 | User Finish 2 | QUANTITY | Sum1 | SUM2 | Order | SUMMARY | Contracts | Cost Centre | Works Area | Location of Works | Sub-locationof Works | Phases of Works | Classification of Works | TBM DT s | TBM DT f | TBM UT f | TBM UT s | Production Rate |
| --- | --- | --- | --- | --- | --- | --- | --- | --- | --- | --- | --- | --- | --- | --- | --- | --- | --- | --- | --- | --- | --- | --- | --- | --- | --- | --- | --- | --- | --- | --- | --- | --- | --- | --- | --- | --- | --- | --- | --- | --- | --- | --- |
|  | 50 | **CP85** |  |  | 2010-10-15 | 2013-08-16 |  |  |  |  |  |  |  |  |  |  |  |  |  |  |  |  |  |  |  |  |  |  |  |  |  |  |  |  |  |  |  |  |  |  |  |  |
| 8200CPC090 |  | GI works for CP85 |  | 10d | 2010-10-15 A | 2010-10-27 A | 8200KD1020 FS+166d | 100% | 2011-02-01 | 2011-02-15 | Cal 1 | Drilling Rig [7 h]; Other Skill Labour (Civil) [336 h] | DCl | CP | 1 | 2010-10-27 | 2010-10-15 | CC C | CROSS PASS | CP85 | N | DCl | 820_AB |  |  |  |  |  |  |  |  |  |  |  |  |  |  |  |  |  |  |  |
| 8200CPC095 |  | CP85 Preparation for Grouting works |  | 24d | 2012-07-09 A | 2012-07-28 A | 8200TBC810a FS+27d | 100% | 2012-07-27 | 2012-08-23 | Cal9(N) (+235m) | Drilling Rig [75 h]; Other Skill Labour (Civil) [3600 h]; Plant Operator [600 h] | DJa | CP | 3 | 2012-11-14 | 2012-08-13 | CC C | CROSS PASS | CP85 | N |  | 820_AB | 2012-08-13 | 2012-11-14 | Ch136+842 | c85 | S | 7 | 1 | 820 | C | 10.2 | 2030 | CP | C090 | EPIW |  |  |  |  |  |
| 8200CPC100 |  | CP85 Fissure Grouting from Tunnel |  | 75d | 2012-07-30 A | 2012-08-13 A | 8200CPC095, 8200CPC090, 8200TBC815 FS-2d, 8200TBC810a FS+27d | 100% | 2012-08-24 | 2013-01-14 | Cal9(N) (+235m) | Drilling Rig [75 h]; Other Skill Labour (Civil) [3600 h]; Plant Operator [600 h] | DJa | CP | 3 | 2012-11-14 | 2012-08-13 | CC C | CROSS PASS | CP85 | N |  | 820_AB | 2012-08-13 | 2012-11-14 | Ch136+842 | c85 | S | 7 | 1 | 820 | C | 10.2 | 2030 | CP | C090 | EPIW |  |  |  |  |  |
| 8200sum100 |  | CP85 | level of effort | 119d | 2012-08-20 A | 2012-11-21 A | 8200CPC105 SS | 100% | 2013-01-15 | 2013-06-21 | Cal9(N)b |  |  |  | 4 |  |  |  |  |  |  |  | 820_AB |  |  |  | c85a |  |  |  |  |  |  |  |  |  |  | 2012-07-20 | 2012-07-20 | 2013-08-03 | 2013-08-03 |  |
| 8200CPC105 |  | Probing/Drainage (DT) |  | 6d | 2012-09-06 A | 2012-09-07 A | 8200CPC100 | 100% | 2013-01-15 | 2013-01-21 | Cal9(N) (+235m) | Other Skill Labour (Civil) [288 h]; Drilling Rig [6 h] | DJa |  |  |  |  | CC C | CROSS PASS | CP85 |  |  | 820_AB |  |  |  |  |  |  | 1 | 820 | C | 10.2 | 2030 | CP | C090 | EPIW |  |  |  |  |  |
| 8200CPC115 |  | Segment Dismantle (DT) |  | 6d | 2012-09-06 A | 2012-09-07 A | 8200CPC105, 8200TBC820 | 100% | 2013-01-22 | 2013-01-28 | Cal9(N) (+235m) | Other Skill Labour (Civil) [288 h] | DJa |  |  |  |  | CC C | CROSS PASS | CP85 |  |  | 820_AB |  |  |  |  |  |  | 1 | 820 | C | 10.2 | 2030 | CP | C090 | EPIW |  |  |  |  |  |
| 8200CPC120 |  | Cross Passage Excavation & Temp.Support (from DT) |  | 21d | 2012-09-10 A | 2013-03-27 A | 8200CPC115 | 100% | 2012-08-31 | 2012-09-26 | Cal9(N) (+235m) | Other Skill Labour (Civil) [1152 h]; Drilling Jumbo [8 h] | DJa |  |  |  |  | CC C | CROSS PASS | CP85 |  |  | 820_AB |  |  | 12.012mx14.5m2 |  |  |  | 1 | 820 | C | 10.2 | 2030 | CP | C090 | EPIW |  |  |  |  | 0.5m/d |
| 8200CPC120b |  | Waterproofing (DT) |  | 9d | 2013-04-26 A | 2013-04-29 A | 8200CPC120 | 100% | 2012-09-27 | 2012-10-09 | Cal9(N) (+235m) | Other Skill Labour (Civil) [672 h]; Drilling Jumbo [8 h] | DJa |  |  |  |  | CC C | CROSS PASS | CP85 |  |  | 820_AB |  |  | 8.64mx14.5m2=125.3m3 |  |  |  | 1 | 820 | C | 10.2 | 2030 | CP | C090 | EPIW |  |  |  |  | 0.5m/d |
| 8200CPC120c |  | Permanent Beam (DT) |  | 9d | 2013-04-29 A | 2013-05-02 A | 8200CPC120b | 100% | 2012-12-19 | 2013-01-02 | Cal9(N) (+235m) | Other Skill Labour (Civil) [672 h]; Drilling Jumbo [8 h] | DJa |  |  |  |  | CC C | CROSS PASS | CP85 |  |  | 820_AB |  |  | 8.64mx14.5m2=125.3m3 |  |  |  | 1 | 820 | C | 10.2 | 2030 | CP | C090 | EPIW |  |  |  |  | 0.5m/d |
| 8200CPC121 |  | Probing/Drainage |  | 6d | 2013-07-22 A | 2013-07-23 A | 8200TBC670z FS+23d | 100% | 2013-07-15 | 2013-07-22 | Cal9(N) (+235m) | Other Skill Labour (Civil) [96 h]; Drilling Rig [3 h] | DJa | C1 |  |  |  | CC C | CROSS PASS | CP85 |  |  | 820_AB |  |  | Ch136+861>>136+661 |  |  |  | 1 | 820 | C | 10.2 | 2030 | CP | C090 | EPIW |  |  |  |  |  |
| 8200CPC123 |  | Segment Dismantle |  | 6d | 2013-07-22 A | 2013-07-23 A | 8200CPC121 | 100% | 2013-07-23 | 2013-07-29 | Cal9(N) (+235m) | Other Skill Labour (Civil) [192 h] | DJa | C1 |  |  |  | CC C | CROSS PASS | CP85 |  |  | 820_AB |  |  |  |  |  |  | 1 | 820 | C | 10.2 | 2030 | CP | C090 | EPIW |  |  |  |  |  |
| 8200CPC125 |  | Cross Passage Excavation & Temp.Support (from UT) |  | 8d | 2013-07-24 A | 2013-07-31 A | 8200CPC123, 8200CPC120, 8200TBC670 SS+18d, 8200CPC120c | 100% | 2013-07-26 | 2013-08-03 | Cal9(N) (+235m) | Other Skill Labour (Civil) [128 h]; TBM Excavation [29 m3]; Drilling Jumbo [4 h] | DJa | C1 |  |  |  | CC C | CROSS PASS | CP85 |  |  | 820_AB |  |  | 2m |  |  |  | 1 | 820 | C | 10.2 | 2030 | CP | C090 | EPIW |  |  |  |  |  |
| 8200CPC130 |  | Waterproofing (UT) |  | 9d | 2013-08-04 A | 2013-08-07 A | 8200CPC120, 8200CPC125 FF, 8200CPC125 | 100% | 2013-08-24 | 2013-09-05 | Cal9(N) (+235m) | Other Skill Labour (Civil) [288 h] | DJa | C1 |  |  |  | CC C | CROSS PASS | CP85 |  |  | 820_AB |  |  |  |  |  |  | 1 | 820 | C | 10.2 | 2030 | CP | C090 | EPIW |  |  |  |  |  |
| 8200CPC140c |  | Permanent Slab |  | 6d | 2013-08-07 A | 2013-08-09 A | 8200y0270 FF, 8200CPC135b, 8200CPC135a | 100% | 2013-09-09 | 2013-09-16 | Cal9(N) (+235m) | Other Skill Labour (Civil) [192 h] | DJa | C1 |  |  |  | CC C | CROSS PASS | CP85 |  |  | 820_AB |  |  |  |  |  |  | 1 | 820 | C | 10.2 | 2030 | CP | C090 | EPIW |  |  |  |  |  |
| 8200CPC135a |  | Permanent Beam (UT) |  | 9d | 2013-08-09 A | 2013-08-12 A | 8200CPC130 | 100% | 2013-09-06 | 2013-09-17 | Cal9(N) (+235m) | Other Skill Labour (Civil) [144 h]; Steel Fixer [144 h]; Concretor [144 h]; Carpenter [144 h] | DJa | C1 |  |  |  | CC C | CROSS PASS | CP85 |  |  | 820_AB |  |  |  |  |  |  | 1 | 820 | C | 10.2 | 2030 | CP | C090 | EPIW |  |  |  |  |  |
| 8200CPC135b |  | Permanent Lining |  | 6d | 2013-08-14 A | 2013-08-16 A | 8200CPC130, 8200CPC135a | 100% | 2013-09-18 | 2013-09-26 | Cal9(N) (+235m) | Steel Fixer [96 h]; Concretor [96 h]; Carpenter [96 h]; Other Skill Labour (Civil) [96 h] | DJa | C1 |  |  |  | CC C | CROSS PASS | CP85 |  |  | 820_AB |  |  |  |  |  |  | 1 | 820 | C | 10.2 | 2030 | CP | C090 | EPIW |  |  |  |  |  |
|  | 60 | **CP86** |  |  | 2010-10-21 | 2013-09-30 |  |  |  |  |  |  |  |  |  |  |  |  |  |  |  |  |  |  |  |  |  |  |  |  |  |  |  |  |  |  |  |  |  |  |  |  |
| 8200CPC150 |  | GI works for CP86 |  | 8d | 2010-10-21 A | 2010-10-29 A | 8200KD1020 FS+130d | 100% |  |  | Cal 1 | Drilling Rig [30 h]; Other Skill Labour (Civil) [1440 h] | DCl | CP | 1 | 2010-10-29 | 2010-10-21 | CC C | CROSS PASS | CP86 | N | DCl | 820_AB |  |  |  |  |  |  |  |  | C |  |  |  |  |  |  |  |  |  |  |
| 8200CPC155 |  | Access Works Area 10.1 for Cross Passages CP86 | milestone | 0d | 2011-04-07 A | 2011-04-07 A | 8200AC1010, 8200TMC370 | 100% | 2011-06-21 | 2011-06-21 | Cal 1 |  | HCh |  |  |  |  | CC C | CROSS PASS | CP86 |  |  | 820_AB |  |  | Ch13 7+101 |  |  |  | 1 | 820 | C | 10.1 | 2030 | CP | C090 | EPIW |  |  |  |  |  |
| 8200CPC156 |  | TTMS & Site Set up |  | 24d | 2011-08-18 A | 2011-09-19 A | 8200CPC155 FS+72d | 100% | 2011-08-31 | 2011-09-30 | Cal 1 | Other Skill Labour (Civil) [1728 h] | HCh |  |  |  |  | CC C | CROSS PASS | CP86 |  |  | 820_AB |  |  |  |  |  |  | A | 820 | C | 11.12 | 2030 | CP | C090 | EPIW |  |  |  |  |  |
| 8200CPC158 |  | Install Sleeve Pipes |  | 32d | 2011-09-20 A | 2011-10-31 A | 8200CPC156 | 100% | 2012-01-16 | 2012-02-24 | Cal 1 | Other Skill Labour (Civil) [1728 h]; Drilling Rig [48 h] | CIp | CP | 1 |  |  | CC C | CROSS PASS | CP86 | N |  | 820_AB |  |  | Ch137+101 |  |  |  | 1 | 820 | C | 10.1 | 2030 | CP | C090 | EPIW |  |  |  |  |  |
| 8200sum110 |  | CP86 Jet Grouting from Surface | level of effort | 0d | 2011-09-20 A | 2013-05-11 A | 8200CPC158 SS | 100% | 2012-01-16 | 2012-01-16 | Cal9(N)b |  |  |  | 4 |  |  |  |  |  |  |  | 820_AB |  |  |  | c86 |  |  |  |  |  |  |  |  |  |  |  |  |  |  |  |
| 8200CPC160 |  | CP86 Jet Grouting from Surface for Down Track Tunnel |  | 86d | 2011-11-01 A | 2012-02-29 A | 8200CPC155, 8200CPC150, 8200CPC158, 8200CPC150 FF, 8200CPC155 FF | 100% | 2012-01-16 | 2012-05-08 | Cal 1 | Drilling Rig [73 h]; Other Skill Labour (Civil) [3504 h] | CIp | CP | 1 | 2012-01-30 | 2011-08-15 | CC C | CROSS PASS | CP86 | N |  | 820_AB | 2011-06-30 | 2012-01-30 | Ch137+101 |  |  |  | 1 | 820 | C | 10.1 | 2030 | CP | C090 | EPIW |  |  |  |  |  |
| 8200CPC165 |  | CP86 TAM Grouting from Surface for Down Track Tunnel |  | 44d | 2012-03-01 A | 2012-04-30 A | 8200CPC160, 8200y0280 FF | 100% |  |  | Cal 1 | Other Skill Labour (Civil) [1152 h]; Drilling Rig [24 h] | CIp | CP | 2 |  |  | CC C | CROSS PASS | CP86 | N |  | 820_AB |  |  |  |  |  |  | 1 | 820 | C | 10.1 | 2030 | CP | C090 | EPIW |  |  |  |  |  |
| 8200CPC166 |  | Discussion with DSD for Sewage Pumping Station |  | 90d | 2012-05-03 A | 2012-05-31 A | 8200CPC165 FS+1d | 100% | 2012-05-03 | 2012-07-31 |  |  |  |  |  |  |  |  | CROSS PASS | CP86 |  |  | 820_AB |  |  |  |  |  |  |  |  | C |  |  |  |  |  |  |  |  |  |  |
| 8200CPC167a |  | CP86 Jet Grouting from Surface for Up Track Tunnel |  | 49d | 2012-06-01 A | 2012-08-22 A | 8200CPC165, 8200CPC150 FF, 8200CPC155, 8200CPC150, 8200CPC166, 8200CPC158, 8200CPC155 FF | 100% | 2012-08-01 | 2012-10-03 | Cal 1 | Drilling Rig [73 h]; Other Skill Labour (Civil) [3504 h] | CIp | CP | 1 | 2012-01-30 | 2011-08-15 | CC C | CROSS PASS | CP86 | N |  | 820_AB | 2011-06-30 | 2012-01-30 | Ch137+101 |  |  |  | 1 | 820 | C | 10.1 | 2030 | CP | C090 | EPIW |  |  |  |  |  |
| 8200CPC167b |  | CP86 TAM Grouting from Surface for Up Track Tunnel |  | 49d | 2012-08-23 A | 2012-10-20 A | 8200y0280 FF, 8200CPC167a | 100% | 2012-10-04 | 2012-11-30 | Cal 1 | Drilling Rig [24 h]; Other Skill Labour (Civil) [1152 h] | CIp | CP | 2 |  |  | CC C | CROSS PASS | CP86 | N |  | 820_AB |  |  |  |  |  |  | 1 | 820 | C | 10.1 | 2030 | CP | C090 | EPIW |  |  |  |  |  |
| 8200CPC170 |  | Probing/Drainage (DT) |  | 6d | 2012-10-03 A | 2012-10-04 A | 8200TBC785a FS+27d, 8200CPC165 | 100% | 2012-12-15 | 2012-12-22 | Cal9(N) (+235m) | Other Skill Labour (Civil) [288 h]; Drilling Rig [6 h] | DJa |  |  |  |  | CC C | CROSS PASS | CP86 |  |  | 820_AB |  |  | 137+101>>>136+901 |  |  |  | 1 | 820 | C | 10.1 | 2030 | CP | C090 | EPIW |  |  |  |  |  |
| 8200CPC180 |  | Segment Dismantle (DT) |  | 6d | 2012-10-03 A | 2012-10-04 A | 8200CPC170 | 100% | 2012-12-24 | 2013-01-02 | Cal9(N) (+235m) | Other Skill Labour (Civil) [432 h] | DJa |  |  |  |  | CC C | CROSS PASS | CP86 |  |  | 820_AB |  |  |  |  |  |  | 1 | 820 | C | 10.1 | 2030 | CP | C090 | EPIW |  |  |  |  |  |
| 8200CPC185 |  | Cross Passage Excavation & Temp.Support (from DT) |  | 10d | 2012-10-05 A | 2012-10-15 A | 8200CPC180 | 100% | 2012-12-15 | 2012-12-29 | Cal9(N) (+235m) | TBM Excavation [106.1 m3]; Other Skill Labour (Civil) [720 h]; Drilling Jumbo [15 h] | DJa |  |  |  |  | CC C | CROSS PASS | CP86 |  |  | 820_AB |  |  | 7.317m |  |  |  | 1 | 820 | C | 10.1 | 2030 | CP | C090 | EPIW |  |  |  |  |  |
| 8200sum120 |  | CP86 | level of effort | 166d | 2012-10-22 A | 2013-09-30 A | 8200CPC170 SS | 100% | 2013-01-07 | 2013-08-12 | Cal9(N)b |  |  |  | 4 |  |  |  |  |  |  |  | 820_AB |  |  |  | c86a |  |  |  |  |  |  |  |  |  |  | 2012-06-09 | 2012-06-09 | 2013-06-20 | 2013-06-20 |  |
| 8200CPC185b |  | Waterproofing (DT) |  | 9d | 2012-10-23 A | 2012-10-26 A | 8200CPC185 | 100% | 2012-12-31 | 2013-01-10 | Cal9(N) (+235m) | Plant Operator [112 h]; Drilling Jumbo [14 h]; TBM Excavation [180 m3]; Other Skill Labour (Civil) [672 h] | DJa |  |  |  |  | CC C | CROSS PASS | CP86 |  |  | 820_AB |  |  | 8.64mx14.5m2=125.3m3 |  |  |  | 1 | 820 | C | 10.2 | 2030 | CP | C090 | EPIW |  |  |  |  | 0.5m/d |
| 8200CPC185c |  | Permanent Beam (DT) |  | 9d | 2012-10-29 A | 2012-10-31 A | 8200CPC185b | 100% | 2013-01-11 | 2013-01-21 | Cal9(N) (+235m) | Other Skill Labour (Civil) [672 h]; Plant Operator [112 h]; Drilling Jumbo [14 h]; TBM Excavation [180 m3] | DJa |  |  |  |  | CC C | CROSS PASS | CP86 |  |  | 820_AB |  |  | 8.64mx14.5m2=125.3m3 |  |  |  | 1 | 820 | C | 10.2 | 2030 | CP | C090 | EPIW |  |  |  |  | 0.5m/d |
| 8200CPC186 |  | Probing/Drainage (UT) |  | 6d | 2013-06-14 A | 2013-06-15 A | 8200CPC167b, 8200TBC645z FS+23d | 100% | 2013-06-08 | 2013-06-17 | Cal9(N) (+235m) | Other Skill Labour (Civil) [96 h]; Drilling Rig [3 h] | DJa | C1 |  |  |  | CC C | CROSS PASS | CP86 |  |  | 820_AB |  |  | Ch137+123>>136+923 |  |  |  | 1 | 820 | C | 10.2 | 2030 | CP | C090 | EPIW |  |  |  |  |  |
| 8200CPC188 |  | Segment Dismantle (UT) |  | 6d | 2013-06-14 A | 2013-06-15 A | 8200CPC186 | 100% | 2013-06-18 | 2013-06-25 | Cal9(N) (+235m) | Other Skill Labour (Civil) [192 h] | DJa | C1 |  |  |  | CC C | CROSS PASS | CP86 |  |  | 820_AB |  |  |  |  |  |  | 1 | 820 | C | 10.2 | 2030 | CP | C090 | EPIW |  |  |  |  |  |
| 8200CPC190 |  | Cross Passage Excavation & Temp.Support (from UT) |  | 8d | 2013-06-16 A | 2013-07-07 A | 8200TBC640, 8200CPC185, 8200CPC180, 8200CPC188, 8200CPC185c | 100% | 2013-06-26 | 2013-07-05 | Cal9(N) (+235m) | TBM Excavation [29 m3]; Other Skill Labour (Civil) [192 h]; Drilling Jumbo [4 h] | DJa | C1 |  |  |  | CC C | CROSS PASS | CP86 |  |  | 820_AB |  |  | 2m |  |  |  | 1 | 820 | C | 10.1 | 2030 | CP | C090 | EPIW |  |  |  |  |  |
| 8200CPC195 |  | Waterproofing (UT) |  | 9d | 2013-07-26 A | 2013-07-29 A | 8200CPC190 | 100% | 2013-08-19 | 2013-08-29 | Cal9(N) (+235m) | Other Skill Labour (Civil) [288 h] | DJa | C1 |  |  |  | CC C | CROSS PASS | CP86 |  |  | 820_AB |  |  |  |  |  |  | 1 | 820 | C | 10.1 | 2030 | CP | C090 | EPIW |  |  |  |  |  |
| 8200CPC205a |  | Permanent Slab |  | 6d | 2013-07-29 A | 2013-07-31 A | 8200y0290, 8200CPC200a, 8200sum120, 8200CPC200b | 100% | 2013-09-13 | 2013-09-21 | Cal9(N) (+235m) | Other Skill Labour (Civil) [192 h] | DJa | C1 |  |  |  | CC C | CROSS PASS | CP86 |  |  | 820_AB |  |  |  |  |  |  | 1 | 820 | C | 10.1 | 2030 | CP | C090 | EPIW |  |  |  |  |  |
| 8200CPC200a |  | Permanent Beam (UT) |  | 9d | 2013-08-01 A | 2013-08-03 A | 8200CPC195 | 100% | 2013-09-02 | 2013-09-12 | Cal9(N) (+235m) | Other Skill Labour (Civil) [144 h]; Steel Fixer [144 h]; Concretor [144 h]; Carpenter [144 h] | DJa | C1 |  |  |  | CC C | CROSS PASS | CP86 |  |  | 820_AB |  |  |  |  |  |  | 1 | 820 | C | 10.1 | 2030 | CP | C090 | EPIW |  |  |  |  |  |
| 8200CPC200b |  | Permanent Lining |  | 6d | 2013-08-05 A | 2013-08-07 A | 8200CPC195, 8200CPC200a | 100% | 2013-09-14 | 2013-09-23 | Cal9(N) (+235m) | Other Skill Labour (Civil) [96 h]; Steel Fixer [96 h]; Concretor [96 h]; Carpenter [96 h] | DJa | C1 |  |  |  | CC C | CROSS PASS | CP86 |  |  | 820_AB |  |  |  |  |  |  | 1 | 820 | C | 10.1 | 2030 | CP | C090 | EPIW |  |  |  |  |  |
| 8200CPC168 |  | Reinstatement |  | 24d | 2013-09-02 A | 2013-09-30 A | 8200CPC165, 8200CPC167b | 100% | 2013-09-02 | 2013-10-03 | Cal 1 | Other Skill Labour (Civil) [1152 h]; Plant Operator [192 h]; Drilling Rig [8 h] | CIp | CP | 2 |  |  | CC C | CROSS PASS | CP86 | N |  | 820_AB |  |  |  |  |  |  | 1 | 820 | C | 10.1 | 2030 | CP | C090 | EPIW |  |  |  |  |  |

Notes:
- 8200CPC090: Basis & Assumptions: 136+860,136+879
- 8200CPC120: Basis & Assumptions: 14.15m
- 8200CPC120b: Basis & Assumptions: 9.62m
- 8200CPC120c: Basis & Assumptions: 9.62m
- 8200CPC185: Basis & Assumptions: 8.65m
- 8200CPC185b: Basis & Assumptions: 9.62m
- 8200CPC185c: Basis & Assumptions: 9.62m

| ID | WBS | Activity | Type | Duration | Start | Finish | Predecessors | Complete | Planned start | Planned finish | Calendar | Resources | Responsible by | Classify | Priority A | Intrafor Finish | Intrafor Start | LEVEL 1 | LEVEL 2 | LEVEL 3 | TS & TN | Cost Centre | 820_As-built | QUANTITY | SUMMARY | Contracts | Works Area | Location of Works | Sub-locationof Works | Phases of Works | Classification of Works | User Start 2 | User Finish 2 | Sum1 | SUM2 | Order | TBM DT s | TBM DT f | TBM UT f | TBM UT s | Production Rate |
| --- | --- | --- | --- | --- | --- | --- | --- | --- | --- | --- | --- | --- | --- | --- | --- | --- | --- | --- | --- | --- | --- | --- | --- | --- | --- | --- | --- | --- | --- | --- | --- | --- | --- | --- | --- | --- | --- | --- | --- | --- | --- |
|  | 70 | **CP87** |  |  | 2011-03-14 | 2013-07-29 |  |  |  |  |  |  |  |  |  |  |  |  |  |  |  |  |  |  |  |  |  |  |  |  |  |  |  |  |  |  |  |  |  |  |  |
| 8200CPC210 |  | GI works for CP87 |  | 6d | 2011-03-14 A | 2011-03-17 A | 8200KD1020 FS+147d | 100% | 2011-06-21 | 2011-06-27 | Cal 1 | Drilling Rig [6 h]; Other Skill Labour (Civil) [288 h] | DCl | CP | 1 | 2011-03-05 | 2011-02-28 | CC C | CROSS PASS | CP87 | N | C | 820_AB |  |  |  |  |  |  |  |  |  |  |  |  |  |  |  |  |  |  |
| 8200CPC220 |  | Access Works Area 11.12 for Cross Passages CP87 | milestone | 0d | 2011-04-07 A | 2011-04-07 A | 8200AC1100, 8200TMC370 | 100% | 2011-06-19 | 2011-06-19 |  |  | HCh |  |  |  |  | CC C | CROSS PASS | CP87 |  | C | 820_AB | Ch137+344 | A | 820 | 11.12 | 2030 | CP | C090 | EPIW |  |  |  |  |  |  |  |  |  |  |
| 8200CPC225 |  | TTA Implemetation |  | 69d | 2011-07-18 A | 2011-10-15 A | 8200CPC220 FS+100d | 100% | 2011-08-31 | 2011-11-24 | Cal 1 | Other Skill Labour (Civil) [1152 h] | HCh |  |  |  |  | CC C | CROSS PASS | CP87 |  | C | 820_AB |  | A | 820 | 11.12 | 2030 | CP | C090 | EPIW |  |  |  |  |  |  |  |  |  |  |
| 8200CPC228 |  | Install Steeve Pipe (for DT area) |  | 29d | 2011-10-17 A | 2011-11-19 A | 8200CPC220 FF, 8200CPC210, 8200CPC225 | 100% | 2012-01-16 | 2012-02-21 | Cal 1 | Drilling Rig [107 h]; Other Skill Labour (Civil) [5136 h]; Plant Operator [856 h] | CIp | CP | 1 | 2011-10-31 | 2011-06-16 | CC C | CROSS PASS | CP87 | N | C | 820_AB | Ch137+344 | A | 820 | 11.12 | 2030 | CP | C090 | EPIW | 2011-06-16 | 2011-10-31 | c87 | S | 11 |  |  |  |  |  |
| 8200CPC230 |  | CP87 Jet Grouting from Surface for Down Track Tunnel |  | 86d | 2011-11-21 A | 2012-02-15 A | 8200CPC210, 8200CPC220 FF, 8200CPC225, 8200CPC228 | 100% | 2012-01-16 | 2012-05-08 | Cal 1 | Other Skill Labour (Civil) [5136 h]; Plant Operator [856 h]; Drilling Rig [107 h] | CIp | CP | 1 | 2011-10-31 | 2011-06-16 | CC C | CROSS PASS | CP87 | N | C | 820_AB | Ch137+344 | A | 820 | 11.12 | 2030 | CP | C090 | EPIW | 2011-06-16 | 2011-10-31 | c87 | S | 11 |  |  |  |  |  |
| 8200CPC232 |  | Tam Grouting from Surface for Down Track Tunnel |  | 48d | 2012-02-16 A | 2012-04-14 A | 8200CPC230, 8200CPC228 | 100% | 2012-02-16 | 2012-04-18 | Cal 1 | Drilling Rig [47 h]; Other Skill Labour (Civil) [2256 h]; Plant Operator [376 h] | CIp | CP | 1 |  |  | CC C | CROSS PASS | CP89 | S | C | 820_AB |  | A | 820 | 11.27 | 2010 | CP | C090 | EPIW |  |  |  |  |  |  |  |  |  |  |
| 8200CPC232a |  | Reinstatement & TTMS |  | 21d | 2012-04-16 A | 2012-04-30 A | 8200CPC232 | 100% | 2012-04-19 | 2012-05-17 | Cal 1 | Other Skill Labour (Civil) [1200 h]; Roller [25]; Backhoe [25 h]; Plant Operator [400 h] | CIp |  |  |  |  | CC C | CROSS PASS | CP87 |  | C | 820_AB |  | A | 820 | 11.12 | 2030 | CP | C090 | EPIW |  |  |  |  |  |  |  |  |  |  |
| 8200CPC240 |  | Probing/Drainage (DT) |  | 6d | 2012-04-16 A | 2012-04-23 A | 8200CPC228, 8200TBC770a FS+26d, 8200CPC230, 8200CPC232 | 100% | 2012-08-31 | 2012-09-06 | Cal9(N) (+235m) | Other Skill Labour (Civil) [432 h]; Drilling Rig [9 h] | DJa |  |  |  |  | CC C | CROSS PASS | CP87 |  | C | 820_AB | 137+344>>>>137144 | A | 820 | 11.12 | 2030 | CP | C090 | EPIW |  |  |  |  |  |  |  |  |  |  |
| 8200sum130 |  | CP87 | level of effort | 282d | 2012-04-16 A | 2013-07-29 A | 8200CPC240 SS | 100% | 2012-08-31 | 2013-09-26 | Cal9(N)b |  |  |  | 4 |  |  |  |  |  |  |  | 820_AB |  |  |  |  |  |  |  |  |  |  | c87a |  |  | 2012-05-08 | 2012-05-08 | 2013-05-22 | 2013-05-22 |  |
| 8200CPC234 |  | Install Steeve Pipe (for UT area) |  | 34d | 2012-05-03 A | 2012-05-15 A | 8200CPC232a | 100% | 2012-05-19 | 2012-06-30 | Cal 1 | Drilling Rig [107 h]; Other Skill Labour (Civil) [5136 h]; Plant Operator [856 h] | CIp | CP | 1 | 2011-10-31 | 2011-06-16 | CC C | CROSS PASS | CP87 | N | C | 820_AB | Ch137+344 | A | 820 | 11.12 | 2030 | CP | C090 | EPIW | 2011-06-16 | 2011-10-31 | c87 | S | 11 |  |  |  |  |  |
| 8200CPC234a |  | CP87 Jet Grouting from Surface for Up Track Tunnel |  | 48d | 2012-05-16 A | 2012-07-18 A | 8200CPC210, 8200CPC228, 8200CPC225, 8200CPC232, 8200CPC234, 8200CPC220 FF | 100% | 2012-07-03 | 2012-08-31 | Cal 1 | Drilling Rig [107 h]; Other Skill Labour (Civil) [5136 h]; Plant Operator [856 h] | CIp | CP | 1 | 2011-10-31 | 2011-06-16 | CC C | CROSS PASS | CP87 | N | C | 820_AB | Ch137+344 | A | 820 | 11.12 | 2030 | CP | C090 | EPIW | 2011-06-16 | 2011-10-31 | c87 | S | 11 |  |  |  |  |  |
| 8200CPC250 |  | Segment Dismantle (DT) |  | 6d | 2012-07-18 A | 2012-07-20 A | 8200CPC240 | 100% | 2012-09-07 | 2012-09-14 | Cal9(N) (+235m) | Other Skill Labour (Civil) [288 h] | DJa |  |  |  |  | CC C | CROSS PASS | CP87 |  | C | 820_AB |  | A | 820 | 11.12 | 2030 | CP | C090 | EPIW |  |  |  |  |  |  |  |  |  |  |
| 8200CPC234b |  | Tam Grouting from Surface for Up Track Tunnel |  | 24d | 2012-07-19 A | 2012-09-29 A | 8200CPC234a, 8200CPC228 | 100% | 2012-09-01 | 2012-10-03 | Cal 1 | Drilling Rig [47 h]; Other Skill Labour (Civil) [2256 h]; Plant Operator [376 h] | CIp | CP | 1 |  |  | CC C | CROSS PASS | CP89 | S | C | 820_AB |  | A | 820 | 11.27 | 2010 | CP | C090 | EPIW |  |  |  |  |  |  |  |  |  |  |
| 8200CPC255 |  | Cross Passage Excavation & Temp.Support (from DT) |  | 4d | 2012-07-21 A | 2012-07-26 A | 8200CPC250 | 100% | 2012-09-15 | 2012-09-19 | Cal9(N) (+235m) | TBM Excavation [69.6 m3]; Other Skill Labour (Civil) [480 h]; Drilling Jumbo [10 h] | DJa |  |  |  |  | CC C | CROSS PASS | CP87 |  | C | 820_AB | 4.8m | A | 820 | 11.12 | 2030 | CP | C090 | EPIW |  |  |  |  |  |  |  |  |  |  |
| 8200CPC255b |  | Waterproofing (DT) |  | 9d | 2012-08-05 A | 2012-08-07 A | 8200CPC255 | 100% | 2012-09-21 | 2012-10-03 | Cal9(N) (+235m) | Other Skill Labour (Civil) [672 h]; Plant Operator [112 h]; Drilling Jumbo [14 h]; TBM Excavation [180 m3] | DJa |  |  |  |  | CC C | CROSS PASS | CP87 |  | C | 820_AB | 8.64mx14.5m2=125.3m3 | 1 | 820 | 10.2 | 2030 | CP | C090 | EPIW |  |  |  |  |  |  |  |  |  | 0.5m/d |
| 8200CPC255c |  | Permanent Beam (DT) |  | 9d | 2012-08-15 A | 2012-08-17 A | 8200CPC255b | 100% | 2012-10-04 | 2012-10-13 | Cal9(N) (+235m) | Other Skill Labour (Civil) [672 h]; Plant Operator [112 h]; Drilling Jumbo [14 h]; TBM Excavation [180 m3] | DJa |  |  |  |  | CC C | CROSS PASS | CP87 |  | C | 820_AB | 8.64mx14.5m2=125.3m3 | 1 | 820 | 10.2 | 2030 | CP | C090 | EPIW |  |  |  |  |  |  |  |  |  | 0.5m/d |
| 8200CPC256 |  | Probing/Drainage (UT) |  | 6d | 2013-05-22 A | 2013-05-23 A | 8200CPC234b, 8200TBC644z2 FS+23d | 100% | 2013-05-25 | 2013-05-31 | Cal9(N) (+235m) | Other Skill Labour (Civil) [96 h]; Drilling Rig [3 h] | DJa |  |  |  |  | CC C | CROSS PASS | CP87 |  | C | 820_AB | Ch137+368>>>137+168 | 1 | 820 | 10.2 | 2030 | CP | C090 | EPIW |  |  |  |  |  |  |  |  |  |  |
| 8200CPC258 |  | Segment Dismantle (UT) |  | 6d | 2013-05-22 A | 2013-05-23 A | 8200CPC256 | 100% | 2013-06-01 | 2013-06-07 | Cal9(N) (+235m) | Other Skill Labour (Civil) [192 h] | DJa |  |  |  |  | CC C | CROSS PASS | CP87 |  | C | 820_AB |  | 1 | 820 | 10.2 | 2030 | CP | C090 | EPIW |  |  |  |  |  |  |  |  |  |  |
| 8200CPC259 |  | Cross Passage Excavation & Temp.Support (from UT) |  | 8d | 2013-05-24 A | 2013-05-30 A | 8200CPC258, 8200CPC255c | 100% | 2013-06-08 | 2013-06-19 | Cal9(N) (+235m) | Drilling Jumbo [4 h]; TBM Excavation [29 m3]; Other Skill Labour (Civil) [192 h] | DJa |  |  |  |  | CC C | CROSS PASS | CP87 |  | C | 820_AB | 2m | 1 | 820 | 10.1 | 2030 | CP | C090 | EPIW |  |  |  |  |  |  |  |  |  |  |
| 8200CPC260 |  | Waterproofing (UT) |  | 9d | 2013-06-14 A | 2013-06-17 A | 8200CPC259, 8200CPC250, 8200CPC255 | 100% | 2013-06-21 | 2013-07-02 | Cal9(N) (+235m) | Other Skill Labour (Civil) [288 h] | DJa |  |  |  |  | CC C | CROSS PASS | CP87 |  | C | 820_AB |  | A | 820 | 11.12 | 2030 | CP | C090 | EPIW |  |  |  |  |  |  |  |  |  |  |
| 8200CPC270a |  | Permanent Slab |  | 6d | 2013-06-17 A | 2013-06-18 A | 8200CPC265b, 8200y0310 FF, 8200CPC265a, 8200sum130 FF | 100% | 2013-07-23 | 2013-07-29 | Cal9(N) (+235m) | Other Skill Labour (Civil) [192 h] | DJa |  |  |  |  | CC C | CROSS PASS | CP87 |  | C | 820_AB |  | A | 820 | 11.12 | 2030 | CP | C090 | EPIW |  |  |  |  |  |  |  |  |  |  |
| 8200CPC265a |  | Permanent Beam (UT) |  | 9d | 2013-06-20 A | 2013-06-22 A | 8200CPC260 | 100% | 2013-07-03 | 2013-07-13 | Cal9(N) (+235m) | Steel Fixer [144 h]; Concretor [144 h]; Carpenter [144 h]; Other Skill Labour (Civil) [144 h] | DJa |  |  |  |  | CC C | CROSS PASS | CP87 |  | C | 820_AB |  | A | 820 | 11.12 | 2030 | CP | C090 | EPIW |  |  |  |  |  |  |  |  |  |  |
| 8200CPC265b |  | Permanent Lining |  | 6d | 2013-06-26 A | 2013-06-28 A | 8200CPC260, 8200CPC265a | 100% | 2013-07-15 | 2013-07-22 | Cal9(N) (+235m) | Other Skill Labour (Civil) [96 h]; Steel Fixer [96 h]; Concretor [96 h]; Carpenter [96 h] | DJa |  |  |  |  | CC C | CROSS PASS | CP87 |  | C | 820_AB |  | A | 820 | 11.12 | 2030 | CP | C090 | EPIW |  |  |  |  |  |  |  |  |  |  |

Notes:
- 8200CPC255: Basis & Assumptions: 5.62
- 8200CPC255b: Basis & Assumptions: 9.62m
- 8200CPC255c: Basis & Assumptions: 9.62m

| ID | WBS | Activity | Type | Duration | Start | Finish | Predecessors | Complete | Planned start | Planned finish | Constraint | Calendar | Resources | Responsible by | Classify | Priority A | Intrafor Finish | Intrafor Start | LEVEL 1 | LEVEL 2 | LEVEL 3 | TS & TN | Responsible (bm makes Global) | 820_As-built | SUMMARY | Contracts | Cost Centre | Works Area | Location of Works | Sub-locationof Works | Phases of Works | Classification of Works | User Start 2 | User Finish 2 | QUANTITY | Sum1 | TBM DT s | TBM DT f | TBM UT f | TBM UT s | Production Rate |
| --- | --- | --- | --- | --- | --- | --- | --- | --- | --- | --- | --- | --- | --- | --- | --- | --- | --- | --- | --- | --- | --- | --- | --- | --- | --- | --- | --- | --- | --- | --- | --- | --- | --- | --- | --- | --- | --- | --- | --- | --- | --- |
|  | 80 | **CP88** |  |  | 2010-12-24 | 2013-07-26 |  |  |  |  |  |  |  |  |  |  |  |  |  |  |  |  |  |  |  |  |  |  |  |  |  |  |  |  |  |  |  |  |  |  |  |
| 8200CPC280 |  | GI works for CP88 |  | 3d | 2010-12-24 A | 2010-12-29 A | 8200KD1020 FS+169d | 100% | 2011-02-01 | 2011-02-07 |  | Cal 1 | Other Skill Labour (Civil) [288 h]; Drilling Rig [6 h] | CIp | CP | 1 | 2010-12-29 | 2010-12-24 | CC C | CROSS PASS | CP88 | N | DCl | 820_AB |  |  |  |  |  |  |  |  |  |  |  |  |  |  |  |  |  |
| 8200CPC292 |  | Site Set up & Preparation |  | 34d | 2011-04-11 A | 2011-05-28 A | 8200CPC290 | 100% | 2011-06-21 | 2011-08-02 |  | Cal 1 |  | CIp | CP | 2 |  |  | CC C | CROSS PASS | CP88 | N |  | 820_AB | 1 | 820 | C | 10.1 | 2030 | CP | C090 | EPIW |  |  |  |  |  |  |  |  |  |
| 8200CPC295a |  | CP88 Jet Grouting from Surface |  | 9d | 2011-05-30 A | 2011-06-09 A | 8200CPC290, 8200CPC280, 8200CPC292 | 100% | 2011-08-09 | 2011-08-20 |  | Cal 1 | Drilling Rig [9 h]; Other Skill Labour (Civil) [432 h]; Plant Operator [72 h] | CIp | CP | 1 | 2011-09-15 | 2011-05-03 | CC C | CROSS PASS | CP88 | N |  | 820_AB | A | 820 | C | 11.21 | 2030 | CP | C090 | EPIW | 2011-05-03 | 2011-09-15 | Ch137+551 | c88 |  |  |  |  |  |
| 8200CPC295b |  | Suspension of Grouting Works | milestone | 0d | 2011-06-10 A | 2011-06-10 A |  | 100% | 2011-06-19 | 2011-06-19 | start on or after 2011-06-10 |  |  | CIp | CP | 1 | 2011-09-15 | 2011-05-03 | CC C | CROSS PASS | CP88 | N |  | 820_AB | A | 820 | C | 11.21 | 2030 | CP | C090 | EPIW | 2011-05-03 | 2011-09-15 | Ch137+551 | c88 |  |  |  |  |  |
| 8200CPC295c |  | Suspension Period for CP88 Jet Grouting Works |  | 4d | 2011-06-10 A | 2011-06-13 A | 8200CPC295b | 100% | 2011-06-19 | 2011-06-22 |  |  |  | CIp | CP | 1 | 2011-09-15 | 2011-05-03 | CC C | CROSS PASS | CP88 | N |  | 820_AB | A | 820 | C | 11.21 | 2030 | CP | C090 | EPIW | 2011-05-03 | 2011-09-15 | Ch137+551 | c88 |  |  |  |  |  |
| 8200CPC295e |  | Re-mobilization |  | 2d | 2011-06-14 A | 2011-06-15 A | 8200CPC295d, 8200CPC280, 8200CPC290 FF, 8200CPC290, 8200CPC292 | 100% | 2011-08-18 | 2011-08-20 |  | Cal 1 | Plant Operator [832 h]; Drilling Rig [104 h]; Other Skill Labour (Civil) [4992 h] | CIp | CP | 1 | 2011-09-15 | 2011-05-03 | CC C | CROSS PASS | CP88 | N |  | 820_AB | A | 820 | C | 11.21 | 2030 | CP | C090 | EPIW | 2011-05-03 | 2011-09-15 | Ch137+551 | c88 |  |  |  |  |  |
| 8200CPC295d |  | Suspension Lifting | milestone | 0d | 2011-06-14 A | 2011-06-14 A | 8200CPC295c | 100% | 2011-06-21 | 2011-06-21 |  | Cal 1 |  | CIp | CP | 1 | 2011-09-15 | 2011-05-03 | CC C | CROSS PASS | CP88 | N |  | 820_AB | A | 820 | C | 11.21 | 2030 | CP | C090 | EPIW | 2011-05-03 | 2011-09-15 | Ch137+551 | c88 |  |  |  |  |  |
| 8200CPC295f |  | CP88 Jet Grouting from Surface (Remaining) |  | 100d | 2011-06-16 A | 2011-10-22 A | 8200CPC290 FF, 8200y0320 FF, 8200CPC280, 8200CPC292, 8200CPC295e, 8200CPC290 | 100% | 2011-08-18 | 2011-12-19 |  | Cal 1 | Drilling Rig [100 h]; Other Skill Labour (Civil) [4800 h]; Plant Operator [800 h] | CIp | CP | 1 | 2011-09-15 | 2011-05-03 | CC C | CROSS PASS | CP88 | N |  | 820_AB | A | 820 | C | 11.21 | 2030 | CP | C090 | EPIW | 2011-05-03 | 2011-09-15 | Ch137+551 | c88 |  |  |  |  |  |
| 8200CPC290 |  | Access Works Area 11.21 for Cross Passages CP88 | milestone | 0d | 2011-08-05 A | 2011-08-05 A | 8200TMC320 | 100% | 2011-08-31 | 2011-08-31 |  |  |  | CIp |  |  |  |  | CC C | CROSS PASS | CP88 |  |  | 820_AB | A | 820 | C | 11.21 | 2030 | CP | C090 | EPIW |  |  |  |  |  |  |  |  |  |
| 8200sum140 |  | CP88 | level of effort | 271d | 2012-03-30 A | 2013-07-26 A | 8200CPC300 SS | 100% | 2012-08-31 | 2013-09-11 |  | Cal9(N)b |  |  |  | 4 |  |  |  |  |  |  |  | 820_AB |  |  |  |  |  |  |  |  |  |  |  | c88a | 2012-04-16 | 2012-04-16 | 2013-05-05 | 2013-05-05 |  |
| 8200CPC300 |  | Probing/Drainage (DT) |  | 6d | 2012-04-12 A | 2012-04-14 A | 8200CPC295f, 8200TBC760a FS+27d, 8200CPC295a, 8200CPC295e | 100% | 2012-08-31 | 2012-09-06 |  | Cal9(N) (+235m) | Other Skill Labour (Civil) [336 h]; Drilling Rig [7 h] | DJa |  |  |  |  | CC C | CROSS PASS | CP88 |  |  | 820_AB | A | 820 | C | 11.21 | 2030 | CP | C090 | EPIW |  |  | 137+551>>>137+351 |  |  |  |  |  |  |
| 8200CPC310 |  | Segment Dismantle (DT) |  | 6d | 2012-04-12 A | 2012-04-14 A | 8200CPC300 | 100% | 2012-09-07 | 2012-09-14 |  | Cal9(N) (+235m) | Other Skill Labour (Civil) [288 h] | DJa |  |  |  |  | CC C | CROSS PASS | CP88 |  |  | 820_AB | A | 820 | C | 11.21 | 2030 | CP | C090 | EPIW |  |  |  |  |  |  |  |  |  |
| 8200CPC315 |  | Cross Passage Excavation & Temp.Support (from DT) |  | 2d | 2012-04-14 A | 2012-04-28 A | 8200CPC310 | 100% | 2012-09-15 | 2012-09-17 |  | Cal9(N) (+235m) | TBM Excavation [62 m3]; Other Skill Labour (Civil) [432 h]; Drilling Jumbo [9 h]; Plant Operator [72 h] | DJa |  |  |  |  | CC C | CROSS PASS | CP88 |  |  | 820_AB | A | 820 | C | 11.21 | 2030 | CP | C090 | EPIW |  |  | 4.275m |  |  |  |  |  |  |
| 8200CPC315b |  | Waterproofing (DT) |  | 9d | 2012-05-17 A | 2012-05-18 A | 8200CPC315 | 100% | 2012-09-18 | 2012-09-28 |  | Cal9(N) (+235m) | Other Skill Labour (Civil) [672 h]; Plant Operator [112 h]; Drilling Jumbo [14 h]; TBM Excavation [180 m3] | DJa |  |  |  |  | CC C | CROSS PASS | CP88 |  |  | 820_AB | 1 | 820 | C | 10.2 | 2030 | CP | C090 | EPIW |  |  | 8.64mx14.5m2=125.3m3 |  |  |  |  |  | 0.5m/d |
| 8200CPC315c |  | Permanent Beam (DT) |  | 9d | 2012-05-18 A | 2012-05-21 A | 8200CPC315b | 100% | 2012-09-29 | 2012-10-11 |  | Cal9(N) (+235m) | Other Skill Labour (Civil) [672 h]; Plant Operator [112 h]; TBM Excavation [180 m3]; Drilling Jumbo [14 h] | DJa |  |  |  |  | CC C | CROSS PASS | CP88 |  |  | 820_AB | 1 | 820 | C | 10.2 | 2030 | CP | C090 | EPIW |  |  | 8.64mx14.5m2=125.3m3 |  |  |  |  |  | 0.5m/d |
| 8200CPC316 |  | Probing/Drainage (UT) |  | 6d | 2013-05-17 A | 2013-05-18 A | 8200TBC635z FS+23d | 100% | 2013-05-23 | 2013-05-29 |  | Cal9(N) (+235m) | Drilling Rig [3 h]; Other Skill Labour (Civil) [96 h] | DJa |  |  |  |  | CC C | CROSS PASS | CP88 |  |  | 820_AB | 1 | 820 | C | 10.2 | 2030 | CP | C090 | EPIW |  |  | Ch137+577>>137+377 |  |  |  |  |  |  |
| 8200CPC318 |  | Segment Dismantle (UT) |  | 6d | 2013-05-17 A | 2013-05-18 A | 8200CPC316 | 100% | 2013-05-30 | 2013-06-05 |  | Cal9(N) (+235m) | Other Skill Labour (Civil) [192 h] | DJa |  |  |  |  | CC C | CROSS PASS | CP88 |  |  | 820_AB | 1 | 820 | C | 10.2 | 2030 | CP | C090 | EPIW |  |  |  |  |  |  |  |  |  |
| 8200CPC319 |  | Cross Passage Excavation & Temp.Support (from UT) |  | 8d | 2013-05-19 A | 2013-05-23 A | 8200CPC315c, 8200CPC318 | 100% | 2013-06-06 | 2013-06-17 |  | Cal9(N) (+235m) | Other Skill Labour (Civil) [128 h]; Drilling Jumbo [4 h]; Plant Operator [32 h]; TBM Excavation [29 m3] | DJa |  |  |  |  | CC C | CROSS PASS | CP88 |  |  | 820_AB | 1 | 820 | C | 10.1 | 2030 | CP | C090 | EPIW |  |  | 2m |  |  |  |  |  |  |
| 8200CPC320 |  | Waterproofing (UT) |  | 9d | 2013-06-03 A | 2013-06-05 A | 8200CPC319, 8200CPC315, 8200CPC310 | 100% | 2013-06-18 | 2013-06-28 |  | Cal9(N) (+235m) | Other Skill Labour (Civil) [288 h] | DJa |  |  |  |  | CC C | CROSS PASS | CP88 |  |  | 820_AB | A | 820 | C | 11.21 | 2030 | CP | C090 | EPIW |  |  |  |  |  |  |  |  |  |
| 8200CPC330a |  | Permanent Slab |  | 6d | 2013-06-05 A | 2013-06-07 A | 8200y0330 FF, 8200CPC325b, 8200CPC325a, 8200sum140 FF | 100% | 2013-07-20 | 2013-07-26 |  | Cal9(N) (+235m) | Other Skill Labour (Civil) [192 h] | DJa |  |  |  |  | CC C | CROSS PASS | CP88 |  |  | 820_AB | A | 820 | C | 11.21 | 2030 | CP | C090 | EPIW |  |  |  |  |  |  |  |  |  |
| 8200CPC325a |  | Permanent Beam (UT) |  | 9d | 2013-06-08 A | 2013-06-11 A | 8200CPC320 | 100% | 2013-06-29 | 2013-07-11 |  | Cal9(N) (+235m) | Other Skill Labour (Civil) [144 h]; Steel Fixer [144 h]; Concretor [144 h]; Carpenter [144 h] | DJa |  |  |  |  | CC C | CROSS PASS | CP88 |  |  | 820_AB | A | 820 | C | 11.21 | 2030 | CP | C090 | EPIW |  |  |  |  |  |  |  |  |  |
| 8200CPC325b |  | Permanent Lining |  | 6d | 2013-06-15 A | 2013-06-18 A | 8200CPC325a, 8200CPC320 | 100% | 2013-07-12 | 2013-07-18 |  | Cal9(N) (+235m) | Other Skill Labour (Civil) [96 h]; Steel Fixer [96 h]; Concretor [96 h]; Carpenter [96 h] | DJa |  |  |  |  | CC C | CROSS PASS | CP88 |  |  | 820_AB | A | 820 | C | 11.21 | 2030 | CP | C090 | EPIW |  |  |  |  |  |  |  |  |  |
|  | 90 | **CP89** |  |  | 2010-10-21 | 2014-02-12 |  |  |  |  |  |  |  |  |  |  |  |  |  |  |  |  |  |  |  |  |  |  |  |  |  |  |  |  |  |  |  |  |  |  |  |
| 8200CPC340 |  | GI works for CP89 |  | 8d | 2010-10-21 A | 2010-10-29 A | 8200KD1020 FS+188d | 100% | 2011-02-01 | 2011-02-12 |  | Cal 1 | Drilling Rig [7 h]; Other Skill Labour (Civil) [336 h] | DCl | CP | 1 | 2010-10-29 | 2010-10-21 | CC C | CROSS PASS | CP89 | S | DCl | 820_AB |  |  |  |  |  |  |  |  |  |  |  |  |  |  |  |  |  |
| 8200CPC350 |  | Access Works Area 11.27 for Cross Passages CP89 | milestone | 0d | 2011-05-12 A | 2011-05-12 A | 8200TMC370 | 100% | 2011-05-28 | 2011-05-28 |  |  |  | CIp |  |  |  |  | CC C | CROSS PASS | CP89 |  |  | 820_AB | A | 820 | C | 11.27 | 2010 | CP | C090 | EPIW |  |  |  |  |  |  |  |  |  |
| 8200CPC355 |  | Setup & Install Sleeve pipes |  | 24d | 2011-08-01 A | 2011-08-31 A | 8200CPC350 FS+64d, 8200CPC340 | 100% | 2011-08-31 | 2011-09-30 |  | Cal 1 | Drilling Rig [24 h]; Other Skill Labour (Civil) [1152 h] | CIp | CP | 1 | 2011-10-31 | 2011-06-01 | CC C | CROSS PASS | CP89 | S |  | 820_AB | A | 820 | C | 11.27 | 2010 | CP | C090 | EPIW | 2011-06-01 | 2011-10-31 | Ch138+051 |  |  |  |  |  |  |
| 8200CPC357 |  | Jet Grouting from Surface (DT) |  | 157d | 2011-09-01 A | 2012-02-06 A | 8200CPC355 | 100% | 2011-08-31 | 2012-03-13 |  | Cal 1 | Drilling Rig [157 h]; Other Skill Labour (Civil) [7536 h] | CIp | CP | 1 | 2011-10-31 | 2011-06-01 | CC C | CROSS PASS | CP89 | S |  | 820_AB | A | 820 | C | 11.27 | 2010 | CP | C090 | EPIW | 2011-06-01 | 2011-10-31 | Ch138+051 |  |  |  |  |  |  |
| 8200CPC358 |  | Jet Grouting from Surface (UT) |  | 32d | 2012-02-07 A | 2012-03-15 A | 8200CPC357 | 100% | 2012-03-15 | 2012-04-30 |  | Cal 1 | Drilling Rig [32 h]; Other Skill Labour (Civil) [1536 h] | CIp | CP | 1 | 2011-10-31 | 2011-06-01 | CC C | CROSS PASS | CP89 | S |  | 820_AB | A | 820 | C | 11.27 | 2010 | CP | C090 | EPIW | 2011-06-01 | 2011-10-31 | Ch138+051 |  |  |  |  |  |  |
| 8200CPC365 |  | Probing/Drainage (DT) |  | 6d | 2012-06-07 A | 2012-06-14 A | 8200TBC455z FS+24d, 8200CPC357 | 100% | 2012-08-31 | 2012-09-06 |  | Cal9(S)Pt25 | Other Skill Labour (Civil) [288 h]; Drilling Rig [6 h] | DJa |  |  |  |  | CC C | CROSS PASS | CP89 |  |  | 820_AB | A | 820 | C | 11.27 | 2010 | CP | C090 | EPIW |  |  | 138051>>>138+251 |  |  |  |  |  |  |
| 8200sum160 |  | CP89 | level of effort | 300d | 2012-06-14 A | 2014-02-12 A | 8200CPC365 | 100% | 2012-09-07 | 2013-10-26 |  | Cal9(N)b |  |  |  | 4 |  |  |  |  |  |  |  | 820_AB |  |  |  |  |  |  |  |  |  |  |  | c89a | 2012-02-01 | 2012-02-01 | 2013-03-13 | 2013-03-13 |  |
| 8200CPC370 |  | Tunnel Frame Support |  | 6d | 2012-06-15 A | 2012-06-23 A | 8200CPC365 | 100% | 2012-09-07 | 2012-09-14 |  | Cal9(S)Pt25 | Other Skill Labour (Civil) [288 h] | DJa |  |  |  |  | CC C | CROSS PASS | CP89 |  |  | 820_AB | A | 820 | C | 11.27 | 2010 | CP | C090 | EPIW |  |  |  |  |  |  |  |  |  |
| 8200CPC375 |  | Segment Dismantle (DT) |  | 6d | 2012-06-15 A | 2012-06-16 A | 8200CPC370 | 100% | 2012-09-15 | 2012-09-22 |  | Cal9(S)Pt25 | Other Skill Labour (Civil) [288 h] | DJa |  |  |  |  | CC C | CROSS PASS | CP89 |  |  | 820_AB | A | 820 | C | 11.27 | 2010 | CP | C090 | EPIW |  |  |  |  |  |  |  |  |  |
| 8200CPC380 |  | Cross Passage Excavation & Temp.Support (from DT) |  | 2d | 2012-06-17 A | 2012-06-20 A | 8200CPC375 | 100% | 2012-09-24 | 2012-09-25 |  | Cal9(S)Pt25 | TBM Excavation [65.3 m3]; Other Skill Labour (Civil) [432 h]; Drilling Jumbo [9 h]; Plant Operator [72 h] | DJa |  |  |  |  | CC C | CROSS PASS | CP89 |  |  | 820_AB | A | 820 | C | 11.27 | 2010 | CP | C090 | EPIW |  |  | 4.5m |  |  |  |  |  |  |
| 8200CPC380b |  | Waterproofing (DT) |  | 9d | 2012-07-07 A | 2012-07-09 A | 8200CPC380 | 100% | 2012-09-26 | 2012-10-08 |  | Cal9(N) (+235m) | Plant Operator [112 h]; Drilling Jumbo [14 h]; TBM Excavation [180 m3]; Other Skill Labour (Civil) [672 h] | DJa |  |  |  |  | CC C | CROSS PASS | CP89 |  |  | 820_AB | 1 | 820 | C | 10.2 | 2030 | CP | C090 | EPIW |  |  | 8.64mx14.5m2=125.3m3 |  |  |  |  |  | 0.5m/d |
| 8200CPC380c |  | Permanent Beam (DT) |  | 9d | 2012-07-13 A | 2012-07-16 A | 8200CPC380b | 100% | 2012-10-09 | 2012-10-18 |  | Cal9(N) (+235m) | Plant Operator [112 h]; Drilling Jumbo [14 h]; TBM Excavation [180 m3]; Other Skill Labour (Civil) [672 h] | DJa |  |  |  |  | CC C | CROSS PASS | CP89 |  |  | 820_AB | 1 | 820 | C | 10.2 | 2030 | CP | C090 | EPIW |  |  | 8.64mx14.5m2=125.3m3 |  |  |  |  |  | 0.5m/d |
| 8200CPC381 |  | Probing/Drainage (from DT) |  | 6d | 2014-01-07 A | 2014-01-07 A | 8200TBC890z FS+3d | 100% | 2014-01-07 | 2014-01-13 |  | Cal9(S)Pt25 | Other Skill Labour (Civil) [96 h] | DJa |  |  |  |  | CC C | CROSS PASS | CP89 |  |  | 820_AB | 1 | 820 | C | 10.2 | 2030 | CP | C090 | EPIW |  |  | Ch138+077>>>138+277 |  |  |  |  |  |  |
| 8200CPC383 |  | Segment Dismantle (UT) |  | 6d | 2014-01-08 A | 2014-01-10 A | 8200CPC381, 8200CPC382 | 100% | 2014-01-08 | 2014-01-14 |  | Cal9(S)Pt25 | Other Skill Labour (Civil) [192 h] | DJa |  |  |  |  | CC C | CROSS PASS | CP89 |  |  | 820_AB | 1 | 820 | C | 10.2 | 2030 | CP | C090 | EPIW |  |  |  |  |  |  |  |  |  |
| 8200CPC382 |  | Cross Passage Excavation & Temp.Support (from DT) |  | 8d | 2014-01-11 A | 2014-01-27 A | 8200CPC380c, 8200CPC381, 8200CPC380c FF | 100% | 2014-01-11 | 2014-01-20 |  | Cal9(S)Pt25 | TBM Excavation [29 m3]; Other Skill Labour (Civil) [128 h]; Backhoe [64 h]; Plant Operator [32 h] | DJa |  |  |  |  | CC C | CROSS PASS | CP89 |  |  | 820_AB | 1 | 820 | C | 10.1 | 2030 | CP | C090 | EPIW |  |  | 2m |  |  |  |  |  |  |
| 8200CPC385 |  | Waterproofing (UT) |  | 9d | 2014-02-04 A | 2014-02-05 A | 8200CPC383 | 100% | 2014-02-04 | 2014-02-13 |  | Cal9(S)Pt25 | Other Skill Labour (Civil) [288 h] | DJa |  |  |  |  | CC C | CROSS PASS | CP89 |  |  | 820_AB | A | 820 | C | 11.27 | 2010 | CP | C090 | EPIW |  |  |  |  |  |  |  |  |  |
| 8200CPC395a |  | Permanent Slab |  | 6d | 2014-02-07 A | 2014-02-07 A | 8200CPC390b, 8200sum160 FF, 8200CPC390a, 8200y0350 FF | 100% | 2014-02-07 | 2014-02-13 |  | Cal9(S)Pt25 | Other Skill Labour (Civil) [192 h] | DJa |  |  |  |  | CC C | CROSS PASS | CP89 |  |  | 820_AB | A | 820 | C | 11.27 | 2010 | CP | C090 | EPIW |  |  |  |  |  |  |  |  |  |
| 8200CPC390a |  | Permanent Beam (UT) |  | 9d | 2014-02-08 A | 2014-02-10 A | 8200CPC385 | 100% | 2014-02-08 | 2014-02-18 |  | Cal9(S)Pt25 | Other Skill Labour (Civil) [144 h]; Steel Fixer [144 h]; Carpenter [144 h]; Concretor [72 h] | DJa |  |  |  |  | CC C | CROSS PASS | CP89 |  |  | 820_AB | A | 820 | C | 11.27 | 2010 | CP | C090 | EPIW |  |  |  |  |  |  |  |  |  |
| 8200CPC390b |  | Permanent Lining |  | 6d | 2014-02-11 A | 2014-02-12 A | 8200CPC385, 8200CPC390a | 100% | 2014-02-11 | 2014-02-17 |  | Cal9(S)Pt25 | Steel Fixer [96 h]; Concretor [48 h]; Carpenter [96 h]; Other Skill Labour (Civil) [96 h] | DJa |  |  |  |  | CC C | CROSS PASS | CP89 |  |  | 820_AB | A | 820 | C | 11.27 | 2010 | CP | C090 | EPIW |  |  |  |  |  |  |  |  |  |

Notes:
- 8200CPC315: Basis & Assumptions: 4.35m
- 8200CPC315b: Basis & Assumptions: 9.62m
- 8200CPC315c: Basis & Assumptions: 9.62m
- 8200CPC380: Basis & Assumptions: 4.13
- 8200CPC380b: Basis & Assumptions: 9.62m
- 8200CPC380c: Basis & Assumptions: 9.62m

| ID | WBS | Activity | Type | Duration | Start | Finish | Predecessors | Complete | Planned start | Planned finish | Constraint | Calendar | Resources | Responsible by | Classify | Priority A | Intrafor Finish | Intrafor Start | LEVEL 1 | LEVEL 2 | LEVEL 3 | TS & TN | Responsible (bm makes Global) | 820_As-built | SUMMARY | Contracts | Cost Centre | Works Area | Location of Works | Sub-locationof Works | Phases of Works | Classification of Works | User Start 2 | User Finish 2 | QUANTITY | Sum1 | SUM2 | Order | TBM DT s | TBM DT f | TBM UT f | TBM UT s | Production Rate |
| --- | --- | --- | --- | --- | --- | --- | --- | --- | --- | --- | --- | --- | --- | --- | --- | --- | --- | --- | --- | --- | --- | --- | --- | --- | --- | --- | --- | --- | --- | --- | --- | --- | --- | --- | --- | --- | --- | --- | --- | --- | --- | --- | --- |
|  | 100 | **CP90** |  |  | 2010-10-06 | 2014-04-30 |  |  |  |  |  |  |  |  |  |  |  |  |  |  |  |  |  |  |  |  |  |  |  |  |  |  |  |  |  |  |  |  |  |  |  |  |  |
| 8200CPC400 |  | GI works for CP90 |  | 5d | 2010-10-06 A | 2010-10-12 A | 8200KD1020 FS+166d | 100% | 2011-02-01 | 2011-02-09 |  | Cal 1 | Drilling Rig [6 h]; Other Skill Labour (Civil) [288 h] | DCl | CP | 1 | 2010-10-12 | 2010-10-06 | CC C | CROSS PASS | CP90 | S | DCl | 820_AB |  |  |  |  |  |  |  |  |  |  |  |  |  |  |  |  |  |  |  |
| 8200CPC405 |  | Access Works Area 11.21 for Cross Passages CP90 | milestone | 0d | 2011-04-07 A | 2011-04-07 A | 8200TMC370, 8200AC1360 | 100% | 2011-06-19 | 2011-06-19 |  |  |  | HCh |  |  |  |  | CC C | CROSS PASS | CP90 |  |  | 820_AB | 1 | 820 | C | 11.30 | 2010 | CP | C090 | EPIW |  |  |  |  |  |  |  |  |  |  |  |
| 8200CPC410 |  | TTA Implementation |  | 24d | 2011-10-03 A | 2011-10-31 A | 8200CPC405 FS+100d | 100% | 2012-01-16 | 2012-02-15 | as late as possible | Cal 1 | Other Skill Labour (Civil) [1152 h] | HCh |  |  |  |  | CC C | CROSS PASS | CP90 |  |  | 820_AB | 1 | 820 | C | 11.30 | 2010 | CP | C090 | EPIW |  |  |  |  |  |  |  |  |  |  |  |
| 8200CPC412 |  | Installl Sleeve Pipes |  | 25d | 2011-11-01 A | 2011-11-30 A | 8200CPC410, 8200CPC405, 8200CPC400 | 100% | 2012-01-16 | 2012-02-16 |  | Cal 1 | Drilling Rig [25 h]; Other Skill Labour (Civil) [1200 h]; Plant Operator [200 h] | CIp | CP | 1 | 2011-08-31 | 2011-06-03 | CC C | CROSS PASS | CP90 | S |  | 820_AB | 1 | 820 | C | 11.30 | 2010 | CP | C090 | EPIW | 2011-06-03 | 2011-08-31 | Ch138+311 | c90 | S | 17 |  |  |  |  |  |
| 8200CPC415 |  | CP90 Jet Grouting from Surface (DT) |  | 116d | 2011-12-01 A | 2012-04-30 A | 8200CPC412, 8200CPC405, 8200CPC410, 8200CPC400 | 100% | 2012-01-16 | 2012-06-15 |  | Cal 1 | Drilling Rig [116 h]; Other Skill Labour (Civil) [5568 h]; Plant Operator [928 h] | CIp | CP | 1 | 2011-08-31 | 2011-06-03 | CC C | CROSS PASS | CP90 | S |  | 820_AB | 1 | 820 | C | 11.30 | 2010 | CP | C090 | EPIW | 2011-06-03 | 2011-08-31 | Ch138+311 | c90 | S | 17 |  |  |  |  |  |
| 8200CPC417 |  | CP90 Jet Grouting from Surface (UT) |  | 96d | 2012-05-14 A | 2012-08-04 A | 8200CPC415 | 100% | 2012-05-02 | 2012-09-01 |  | Cal 1 | Drilling Rig [96 h]; Other Skill Labour (Civil) [4608 h]; Plant Operator [768 h] | CIp | CP | 1 | 2011-08-31 | 2011-06-03 | CC C | CROSS PASS | CP90 | S |  | 820_AB | 1 | 820 | C | 11.30 | 2010 | CP | C090 | EPIW | 2011-06-03 | 2011-08-31 | Ch138+311 | c90 | S | 17 |  |  |  |  |  |
| 8200CPC425 |  | Probing/Drainage (DT) |  | 6d | 2012-07-31 A | 2012-08-06 A | 8200TBC470z FS+24d | 100% | 2012-08-31 | 2012-09-06 |  | Cal9(S)Pt25 | Other Skill Labour (Civil) [288 h]; Drilling Rig [6 h] | DJa |  |  |  |  | CC C | CROSS PASS | CP90 |  |  | 820_AB | 1 | 820 | C | 11.30 | 2010 | CP | C090 | EPIW |  |  | 138+311>>138+511 |  |  |  |  |  |  |  |  |
| 8200sum170 |  | CP90 | level of effort | 358d | 2012-07-31 A | 2014-04-24 A | 8200CPC425 SS | 100% | 2012-08-31 | 2013-12-28 |  | Cal9(N)b |  |  |  | 4 |  |  |  |  |  |  |  | 820_AB |  |  |  |  |  |  |  |  |  |  |  | c90a |  |  | 2012-02-29 | 2012-02-29 | 2013-04-06 | 2013-04-06 |  |
| 8200CPC435 |  | Segment Dismantle (DT) |  | 6d | 2012-08-09 A | 2012-08-11 A | 8200CPC425 | 100% | 2012-09-07 | 2012-09-14 |  | Cal9(S)Pt25 | Other Skill Labour (Civil) [288 h] | DJa |  |  |  |  | CC C | CROSS PASS | CP90 |  |  | 820_AB | 1 | 820 | C | 11.30 | 2010 | CP | C090 | EPIW |  |  |  |  |  |  |  |  |  |  |  |
| 8200CPC440 |  | Cross Passage Excavation & Temp.Support (from DT) |  | 6d | 2012-08-12 A | 2012-08-17 A | 8200CPC435 | 100% | 2012-09-15 | 2012-09-22 |  | Cal9(S)Pt25 | TBM Excavation [65.2 m3]; Other Skill Labour (Civil) [432 h]; Plant Operator [72 h]; Drilling Jumbo [9 h] | DJa |  |  |  |  | CC C | CROSS PASS | CP90 |  |  | 820_AB | 1 | 820 | C | 11.30 | 2010 | CP | C090 | EPIW |  |  | 4.498m |  |  |  |  |  |  |  |  |
| 8200CPC440b |  | Waterproofing (DT) |  | 9d | 2012-10-29 A | 2012-10-31 A | 8200CPC440 | 100% | 2012-09-24 | 2012-10-05 |  | Cal9(N) (+235m) | Drilling Jumbo [14 h]; TBM Excavation [180 m3]; Other Skill Labour (Civil) [672 h]; Plant Operator [112 h] | DJa |  |  |  |  | CC C | CROSS PASS | CP90 |  |  | 820_AB | 1 | 820 | C | 10.2 | 2030 | CP | C090 | EPIW |  |  | 8.64mx14.5m2=125.3m3 |  |  |  |  |  |  |  | 0.5m/d |
| 8200CPC440c |  | Permanent Beam (DT) |  | 9d | 2012-11-05 A | 2012-11-07 A | 8200CPC440b | 100% | 2012-10-06 | 2012-10-16 |  | Cal9(N) (+235m) | Other Skill Labour (Civil) [672 h]; Plant Operator [112 h]; Drilling Jumbo [14 h]; TBM Excavation [180 m3] | DJa |  |  |  |  | CC C | CROSS PASS | CP90 |  |  | 820_AB | 1 | 820 | C | 10.2 | 2030 | CP | C090 | EPIW |  |  | 8.64mx14.5m2=125.3m3 |  |  |  |  |  |  |  | 0.5m/d |
| 8200CPC441 |  | Probing/Drainage (UT) |  | 6d | 2014-04-09 A | 2014-04-10 A | 8200TBC894z FS+8d | 100% | 2014-04-09 | 2014-04-16 |  | Cal9(S)Pt25 | Other Skill Labour (Civil) [96 h] | DJa |  |  |  |  | CC C | CROSS PASS | CP90 |  |  | 820_AB | 1 | 820 | C | 10.2 | 2030 | CP | C090 | EPIW |  |  | Ch138+337>>>138+537 |  |  |  |  |  |  |  |  |
| 8200CPC443 |  | Segment Dismantle (UT) |  | 6d | 2014-04-11 A | 2014-04-12 A | 8200CPC441, 8200CPC442 | 100% | 2014-04-11 | 2014-04-19 |  | Cal9(S)Pt25 | Other Skill Labour (Civil) [192 h] | DJa |  |  |  |  | CC C | CROSS PASS | CP90 |  |  | 820_AB | 1 | 820 | C | 10.2 | 2030 | CP | C090 | EPIW |  |  |  |  |  |  |  |  |  |  |  |
| 8200CPC442 |  | Cross Passage Excavation & Temp.Support (UT) |  | 8d | 2014-04-12 A | 2014-04-17 A | 8200TBC890 SS, 8200CPC440, 8200TBC880, 8200CPC441, 8200TBC891a, 8200CPC440c | 100% | 2014-04-12 | 2014-04-24 |  | Cal9(S)Pt25 | TBM Excavation [29 m3]; Other Skill Labour (Civil) [192 h]; Plant Operator [32 h]; Backhoe [64 h] | DJa |  |  |  |  | CC C | CROSS PASS | CP90 |  |  | 820_AB | 1 | 820 | C | 11.30 | 2010 | CP | C090 | EPIW |  |  | 2m |  |  |  |  |  |  |  |  |
| 8200CPC460 |  | Waterproofing (UT) |  | 8d | 2014-04-22 A | 2014-04-23 A | 8200CPC443 | 100% | 2014-04-22 | 2014-04-30 |  | Cal9(S)Pt25 | Other Skill Labour (Civil) [256 h] | DJa |  |  |  |  | CC C | CROSS PASS | CP90 |  |  | 820_AB | 1 | 820 | C | 11.30 | 2010 | CP | C090 | EPIW |  |  |  |  |  |  |  |  |  |  |  |
| 8200CPC470a |  | Permanent Slab |  | 6d | 2014-04-24 A | 2014-04-24 A | 8200sum170 FF, 8200CPC465b, 8200y0370 FF, 8200CPC465a | 100% | 2014-04-24 | 2014-04-30 |  | Cal9(S)Pt25 | Other Skill Labour (Civil) [192 h] | DJa |  |  |  |  | CC C | CROSS PASS | CP90 |  |  | 820_AB | 1 | 820 | C | 11.30 | 2010 | CP | C090 | EPIW |  |  |  |  |  |  |  |  |  |  |  |
| 8200CPC465a |  | Permanent Beam (UT) |  | 8d | 2014-04-28 A | 2014-04-28 A | 8200CPC460 | 100% | 2014-04-28 | 2014-05-08 |  | Cal9(S)Pt25 | Other Skill Labour (Civil) [256 h] | DJa |  |  |  |  | CC C | CROSS PASS | CP90 |  |  | 820_AB | 1 | 820 | C | 11.30 | 2010 | CP | C090 | EPIW |  |  |  |  |  |  |  |  |  |  |  |
| 8200CPC465b |  | Permanent Lining |  | 6d | 2014-04-30 A | 2014-04-30 A | 8200CPC460, 8200CPC465a | 100% | 2014-04-30 | 2014-05-08 |  | Cal9(S)Pt25 | Other Skill Labour (Civil) [192 h] | DJa |  |  |  |  | CC C | CROSS PASS | CP90 |  |  | 820_AB | 1 | 820 | C | 11.30 | 2010 | CP | C090 | EPIW |  |  |  |  |  |  |  |  |  |  |  |
|  | 110 | **CP91** |  |  | 2010-10-30 | 2014-05-14 |  |  |  |  |  |  |  |  |  |  |  |  |  |  |  |  |  |  |  |  |  |  |  |  |  |  |  |  |  |  |  |  |  |  |  |  |  |
| 8200CPC490 |  | GI works for CP91 |  | 8d | 2010-10-30 A | 2010-11-09 A | 8200KD1020 FS+147d | 100% | 2011-02-01 | 2011-02-12 |  | Cal 1 | Drilling Rig [6 h]; Other Skill Labour (Civil) [288 h] | DCl | CP | 1 | 2010-11-09 | 2010-10-30 | CC C | CROSS PASS | CP91 | S | DCl | 820_AB |  |  |  |  |  |  |  |  |  |  |  |  |  |  |  |  |  |  |  |
| 8200CPC500 |  | Access Works Area 11.21 for Cross Passages CP91 | milestone | 0d | 2011-04-07 A | 2011-04-07 A |  | 100% | 2011-06-19 | 2011-06-19 |  |  |  | HCh |  |  |  |  | CC C | CROSS PASS | CP91 |  |  | 820_AB | A | 820 | C | 11.21 | 2010 | CP | C090 | EPIW |  |  |  |  |  |  |  |  |  |  |  |
| 8200CPC502 |  | TTMS & Site Set up |  | 36d | 2011-08-29 A | 2011-10-15 A | 8200CPC500 FS+85d | 100% | 2011-08-31 | 2011-10-17 | as late as possible | Cal 1 | Other Skill Labour (Civil) [1200 h] | HCh |  |  |  |  | CC C | CROSS PASS | CP91 |  |  | 820_AB | 1 | 820 | C | 11.30 | 2010 | CP | C090 | EPIW |  |  |  |  |  |  |  |  |  |  |  |
| 8200CPC504 |  | Install Sleeve Pipes (DT) |  | 12d | 2011-10-17 A | 2011-10-31 A | 8200CPC490, 8200CPC500, 8200CPC502, 8200CPC500 FF | 100% | 2012-01-16 | 2012-02-01 |  | Cal 1 | Drilling Rig [12 h]; Other Skill Labour (Civil) [576 h]; Plant Operator [96 h] | CIp | CP | 1 | 2011-07-30 | 2011-05-16 | CC C | CROSS PASS | CP91 | S |  | 820_AB | A | 820 | C | 11.21 | 2010 | CP | C090 | EPIW | 2011-05-16 | 2011-12-01 | Ch138+551 |  |  |  |  |  |  |  |  |
| 8200sum180 |  | CP91 Grouting from Surface | level of effort | 154d | 2011-10-17 A | 2012-10-20 A | 8200CPC504 SS, 8200CPC505 SS | 100% | 2012-01-16 | 2012-08-01 |  | Cal9(N)b |  |  |  | 4 |  |  |  |  |  |  |  | 820_AB |  |  |  |  |  |  |  |  |  |  |  | c91 |  |  |  |  |  |  |  |
| 8200CPC505 |  | Jet Grouting from Surface for Down Track Tunnel |  | 108d | 2011-11-28 A | 2012-04-16 A | 8200CPC502 FS-12d, 8200CPC504, 8200CPC490, 8200CPC500, 8200CPC500 FF | 100% | 2012-01-16 | 2012-06-05 |  | Cal 1 | Drilling Rig [108 h]; Other Skill Labour (Civil) [5184 h]; Plant Operator [864 h] | CIp | CP | 1 | 2011-07-30 | 2011-05-16 | CC C | CROSS PASS | CP91 | S |  | 820_AB | A | 820 | C | 11.21 | 2010 | CP | C090 | EPIW | 2011-05-16 | 2011-12-01 | Ch138+551 |  |  |  |  |  |  |  |  |
| 8200CPC506 |  | TTMS Rearrangement |  | 21d | 2012-05-14 A | 2012-06-16 A | 8200CPC504, 8200CPC505, 8200CPC500 | 100% | 2012-04-16 | 2012-05-14 | as late as possible | Cal 1 | Other Skill Labour (Civil) [1008 h] | CIp |  |  |  |  | CC C | CROSS PASS | CP91 |  |  | 820_AB | 1 | 820 | C | 11.30 | 2010 | CP | C090 | EPIW |  |  |  |  |  |  |  |  |  |  |  |
| 8200CPC507 |  | Install Sleeve Pipes (UT) |  | 24d | 2012-06-18 A | 2012-07-20 A | 8200CPC506 | 100% | 2012-05-15 | 2012-06-13 |  | Cal 1 | Drilling Rig; Other Skill Labour (Civil); Plant Operator | CIp | CP | 1 | 2011-07-30 | 2011-05-16 | CC C | CROSS PASS | CP91 | S |  | 820_AB | A | 820 | C | 11.21 | 2010 | CP | C090 | EPIW | 2011-05-16 | 2011-12-01 | Ch138+551 |  |  |  |  |  |  |  |  |
| 8200CPC508 |  | Jet Grouting from Surface for Up Track Tunnel |  | 72d | 2012-07-21 A | 2012-10-20 A | 8200y0380 FF, 8200CPC507, 8200CPC506, 8200sum180 FF | 100% | 2012-06-14 | 2012-09-14 |  | Cal 1 | Drilling Rig [60 h]; Other Skill Labour (Civil) [3072 h]; Plant Operator [512 h] | CIp | CP | 1 |  |  | CC C | CROSS PASS | CP91 | S |  | 820_AB | A | 820 | C | 11.21 | 2010 | CP | C090 | EPIW |  |  | Ch138+551 |  |  |  |  |  |  |  |  |
| 8200CPC510 |  | Probing/Drainage (DT) |  | 6d | 2012-10-24 A | 2012-10-31 A | 8200CPC505, 8200TBC490z FS+24d, 8200CPC504 | 100% | 2012-10-31 | 2012-11-06 |  | Cal9(S)Pt25 | Other Skill Labour (Civil) [288 h] | DJa |  |  |  |  | CC C | CROSS PASS | CP91 |  |  | 820_AB | A | 820 | C | 11.21 | 2010 | CP | C090 | EPIW |  |  | 138+551>>138+751 |  |  |  |  |  |  |  |  |
| 8200sum190 |  | CP91 | level of effort | 251d | 2012-10-24 A | 2014-05-08 A | 8200CPC510 SS | 100% | 2012-10-31 | 2013-10-17 |  | Cal9(N)b |  |  |  | 4 |  |  |  |  |  |  |  | 820_AB |  |  |  |  |  |  |  |  |  |  |  | c91a |  |  | 2012-03-22 | 2012-03-22 | 2013-04-27 | 2013-04-27 |  |
| 8200CPC515 |  | Tunnel Frame Support |  | 6d | 2012-11-01 A | 2012-11-08 A | 8200CPC510 | 100% | 2012-11-30 | 2012-12-06 |  | Cal9(S)Pt25 | Other Skill Labour (Civil) [288 h] | DJa |  |  |  |  | CC C | CROSS PASS | CP91 |  |  | 820_AB | A | 820 | C | 11.21 | 2010 | CP | C090 | EPIW |  |  |  |  |  |  |  |  |  |  |  |
| 8200CPC520 |  | Segment Dismantle (DT) |  | 6d | 2012-11-14 A | 2012-11-15 A | 8200CPC515 | 100% | 2012-12-07 | 2012-12-13 |  | Cal9(S)Pt25 | Other Skill Labour (Civil) [288 h] | DJa |  |  |  |  | CC C | CROSS PASS | CP91 |  |  | 820_AB | A | 820 | C | 11.21 | 2010 | CP | C090 | EPIW |  |  |  |  |  |  |  |  |  |  |  |
| 8200CPC525 |  | Cross Passage Excavation & Temp.Support (from DT) |  | 10d | 2012-11-16 A | 2012-11-21 A | 8200CPC520 | 100% | 2012-12-14 | 2012-12-27 |  | Cal9(S)Pt25 | TBM Excavation [70.2 m3]; Other Skill Labour (Civil) [480 h]; Drilling Jumbo [10 h] | DJa |  |  |  |  | CC C | CROSS PASS | CP91 |  |  | 820_AB | A | 820 | C | 11.21 | 2010 | CP | C090 | EPIW |  |  | 4.84m |  |  |  |  |  |  |  |  |
| 8200CPC525b |  | Waterproofing (DT) |  | 9d | 2012-12-05 A | 2012-12-07 A | 8200CPC525 | 100% | 2012-12-15 | 2012-12-28 |  | Cal9(N) (+235m) | Other Skill Labour (Civil) [672 h]; Plant Operator [112 h]; Drilling Jumbo [14 h]; TBM Excavation [180 m3] | DJa |  |  |  |  | CC C | CROSS PASS | CP91 |  |  | 820_AB | 1 | 820 | C | 10.2 | 2030 | CP | C090 | EPIW |  |  | 8.64mx14.5m2=125.3m3 |  |  |  |  |  |  |  | 0.5m/d |
| 8200CPC525c |  | Permanent Beam (DT) |  | 9d | 2012-12-11 A | 2012-12-13 A | 8200CPC525b | 100% | 2013-02-01 | 2013-02-16 |  | Cal9(N) (+235m) | Other Skill Labour (Civil) [144 h]; Plant Operator [112 h]; Drilling Jumbo [14 h]; TBM Excavation [180 m3] | DJa |  |  |  |  | CC C | CROSS PASS | CP91 |  |  | 820_AB | 1 | 820 | C | 10.2 | 2030 | CP | C090 | EPIW |  |  | 8.64mx14.5m2=125.3m3 |  |  |  |  |  |  |  | 0.5m/d |
| 8200CPC526 |  | Probing/Drainage (from DT) |  | 6d | 2014-04-25 A | 2014-04-26 A | 8200TBC905z FS+7d, 8200CPC508 | 100% | 2014-04-25 | 2014-05-02 |  | Cal9(S)Pt25 | Other Skill Labour (Civil) [96 h] | DJa |  |  |  |  | CC C | CROSS PASS | CP91 |  |  | 820_AB | 1 | 820 | C | 10.2 | 2030 | CP | C090 | EPIW |  |  | Ch138+577>>138+777 |  |  |  |  |  |  |  |  |
| 8200CPC528 |  | Segment Dismantle (UT) |  | 6d | 2014-04-25 A | 2014-04-26 A | 8200CPC526 | 100% | 2014-04-25 | 2014-05-02 |  | Cal9(S)Pt25 | Other Skill Labour (Civil) [192 h] | DJa |  |  |  |  | CC C | CROSS PASS | CP91 |  |  | 820_AB | 1 | 820 | C | 10.2 | 2030 | CP | C090 | EPIW |  |  |  |  |  |  |  |  |  |  |  |
| 8200CPC545 |  | Waterproofing (UT) |  | 9d | 2014-05-05 A | 2014-05-07 A | 8200CPC528 | 100% | 2014-05-05 | 2014-05-16 |  | Cal9(S)Pt25 | Other Skill Labour (Civil) [288 h] | DJa |  |  |  |  | CC C | CROSS PASS | CP91 |  |  | 820_AB | A | 820 | C | 11.21 | 2010 | CP | C090 | EPIW |  |  |  |  |  |  |  |  |  |  |  |
| 8200CPC555a |  | Permanent Slab |  | 6d | 2014-05-08 A | 2014-05-08 A | 8200y0390 FF, 8200CPC550c, 8200sum190 FF, 8200CPC550b | 100% | 2014-05-08 | 2014-05-15 |  | Cal9(S)Pt25 | Other Skill Labour (Civil) [192 h] | DJa |  |  |  |  | CC C | CROSS PASS | CP91 |  |  | 820_AB | A | 820 | C | 11.21 | 2010 | CP | C090 | EPIW |  |  |  |  |  |  |  |  |  |  |  |
| 8200CPC550b |  | Permanent Beam (UT) |  | 9d | 2014-05-12 A | 2014-05-12 A | 8200CPC545 | 100% | 2014-05-12 | 2014-05-22 |  | Cal9(S)Pt25 | Other Skill Labour (Civil) [288 h] | DJa |  |  |  |  | CC C | CROSS PASS | CP91 |  |  | 820_AB | A | 820 | C | 11.21 | 2010 | CP | C090 | EPIW |  |  |  |  |  |  |  |  |  |  |  |
| 8200CPC550c |  | Permanent Lining |  | 6d | 2014-05-14 A | 2014-05-14 A | 8200CPC545, 8200CPC550b | 100% | 2014-05-14 | 2014-05-21 |  | Cal9(S)Pt25 | Other Skill Labour (Civil) [192 h] | DJa |  |  |  |  | CC C | CROSS PASS | CP91 |  |  | 820_AB | A | 820 | C | 11.21 | 2010 | CP | C090 | EPIW |  |  |  |  |  |  |  |  |  |  |  |

Notes:
- 8200CPC440: Basis & Assumptions: 6.77m
- 8200CPC440b: Basis & Assumptions: 9.62m
- 8200CPC440c: Basis & Assumptions: 9.62m
- 8200CPC525b: Basis & Assumptions: 9.62m
- 8200CPC525c: Basis & Assumptions: 9.62m

| ID | WBS | Activity | Type | Duration | Start | Finish | Predecessors | Complete | Planned start | Planned finish | Calendar | Resources | Responsible by | Classify | Priority A | Intrafor Finish | Intrafor Start | LEVEL 1 | LEVEL 2 | LEVEL 3 | TS & TN | 820_As-built | SUMMARY | Contracts | Cost Centre | Works Area | Location of Works | Sub-locationof Works | Phases of Works | Classification of Works | User Start 2 | User Finish 2 | QUANTITY | TBM DT s | TBM DT f | Sum1 | TBM UT f | TBM UT s | Production Rate | Responsible (bm makes Global) |
| --- | --- | --- | --- | --- | --- | --- | --- | --- | --- | --- | --- | --- | --- | --- | --- | --- | --- | --- | --- | --- | --- | --- | --- | --- | --- | --- | --- | --- | --- | --- | --- | --- | --- | --- | --- | --- | --- | --- | --- | --- |
|  | 120 | **CP92** |  |  | 2011-02-23 | 2014-05-31 |  |  |  |  |  |  |  |  |  |  |  |  |  |  |  |  |  |  |  |  |  |  |  |  |  |  |  |  |  |  |  |  |  |  |
| 8200CPC560 |  | GI works for CP92 |  | 6d | 2011-02-23 A | 2011-02-28 A | 8200KD1020 FS+205d | 100% | 2011-06-21 | 2011-06-27 | Cal 1 | Other Skill Labour (Civil) [288 h] | DCl | CP | 1 | 2011-03-05 | 2011-02-28 | CC C | CROSS PASS | CP92 | S | 820_AB |  |  |  |  |  |  |  |  |  |  |  |  |  |  |  |  |  |  |
| 8200CPC570 |  | Access Works Area 11.21 for Cross Passages CP92 | milestone | 0d | 2011-05-05 A | 2011-05-05 A | 8200TMC370 | 100% | 2011-06-19 | 2011-06-19 |  |  | HCh |  |  |  |  | CC C | CROSS PASS | CP92 |  | 820_AB | A | 820 | C | 11.21 | 2010 | CP | C090 | EPIW |  |  |  |  |  |  |  |  |  |  |
| 8200CPC572 |  | TTMS & Site Set up |  | 46d | 2011-07-01 A | 2011-08-30 A | 8200CPC570 | 100% | 2011-06-21 | 2011-08-17 | Cal 1 | Other Skill Labour (Civil) [2208 h] | HCh |  |  |  |  | CC C | CROSS PASS | CP92 |  | 820_AB | 1 | 820 | C | 11.30 | 2010 | CP | C090 | EPIW |  |  |  |  |  |  |  |  |  |  |
| 8200CPC573 |  | Install Sleeve Pipes |  | 12d | 2011-09-01 A | 2011-09-17 A | 8200CPC560, 8200CPC570, 8200CPC572 | 100% | 2012-01-16 | 2012-02-01 | Cal 1 | Other Skill Labour (Civil) [576 h]; Plant Operator [96 h]; Drilling Rig [12 h] | CIp | CP | 1 | 2011-09-30 | 2011-06-16 | CC C | CROSS PASS | CP92 | S | 820_AB | A | 820 | C | 11.21 | 2010 | CP | C090 | EPIW | 2011-06-16 | 2011-12-31 | Ch138+801 |  |  |  |  |  |  |  |
| 8200CPC575 |  | Jet Grouting from Surface for Up Track Tunnel |  | 59d | 2011-09-19 A | 2011-11-30 A | 8200CPC570, 8200CPC572, 8200CPC560, 8200CPC573 | 100% | 2012-01-16 | 2012-03-27 | Cal 1 | Drilling Rig [59 h]; Other Skill Labour (Civil) [2832 h]; Plant Operator [472 h] | CIp | CP | 1 | 2011-09-30 | 2011-06-16 | CC C | CROSS PASS | CP92 | S | 820_AB | A | 820 | C | 11.21 | 2010 | CP | C090 | EPIW | 2011-06-16 | 2011-12-31 | Ch138+801 |  |  |  |  |  |  |  |
| 8200CPC577 |  | TTMS Rearrangement |  | 25d | 2012-01-03 A | 2012-02-04 A | 8200CPC575, 8200CPC573 | 100% | 2012-01-16 | 2012-02-16 | Cal 1 | Other Skill Labour (Civil) [1680 h] | CIp |  |  |  |  | CC C | CROSS PASS | CP92 |  | 820_AB | 1 | 820 | C | 11.30 | 2010 | CP | C090 | EPIW |  |  |  |  |  |  |  |  |  |  |
| 8200CPC578 |  | Insall Sleeve Pipes |  | 12d | 2012-02-06 A | 2012-02-20 A | 8200CPC575 SS+25d, 8200CPC577, 8200CPC573 SS+25d | 100% | 2012-02-04 | 2012-02-17 | Cal 1 | Drilling Rig [12 h]; Other Skill Labour (Civil) [576 h]; Plant Operator [96 h] | CIp | CP | 1 |  |  | CC C | CROSS PASS | CP92 | S | 820_AB | A | 820 | C | 11.21 | 2010 | CP | C090 | EPIW |  |  |  |  |  |  |  |  |  |  |
| 8200CPC580 |  | Jet Grouting from Surface for Down Track Tunnel |  | 90d | 2012-02-21 A | 2012-07-14 A | 8200CPC575 SS+25d, 8200CPC578, 8200CPC573 SS+25d, 8200CPC577 | 100% | 2012-02-18 | 2012-06-15 | Cal 1 | Drilling Rig [90 h]; Other Skill Labour (Civil) [4320 h]; Plant Operator [720 h] | CIp | CP | 1 |  |  | CC C | CROSS PASS | CP92 | S | 820_AB | A | 820 | C | 11.21 | 2010 | CP | C090 | EPIW |  |  |  |  |  |  |  |  |  |  |
| 8200CPC582 |  | Road Reinstatment |  | 24d | 2012-07-16 A | 2012-10-13 A | 8200CPC578, 8200CPC580 | 100% | 2012-06-16 | 2012-07-18 | Cal 1 | Other Skill Labour (Civil) [1152 h]; Backhoe [24 h]; Roller [24] | CIp |  |  |  |  | CC C | CROSS PASS | CP90 |  | 820_AB | 1 | 820 | C | 11.30 | 2010 | CP | C090 | EPIW |  |  |  |  |  |  |  |  |  |  |
| 8200CPC585 |  | Probing/Drainage (DT) |  | 6d | 2012-11-09 A | 2012-11-10 A | 8200CPC580, 8200TBC500z FS+24d, 8200CPC578 | 100% | 2012-10-31 | 2012-11-06 | Cal9(S)Pt25 | Other Skill Labour (Civil) [288 h]; Drilling Rig [6 h] | DJa |  |  |  |  | CC C | CROSS PASS | CP92 |  | 820_AB | A | 820 | C | 11.21 | 2010 | CP | C090 | EPIW |  |  | 138+801>>139+001 |  |  |  |  |  |  |  |
| 8200sum210 |  | CP92 | level of effort | 266d | 2012-11-09 A | 2014-05-26 A | 8200CPC585 SS | 100% | 2012-10-31 | 2013-11-04 | Cal9(N)b |  |  |  | 4 |  |  |  |  |  |  | 820_AB |  |  |  |  |  |  |  |  |  |  |  | 2012-04-18 | 2012-04-18 | c92a | 2013-05-19 | 2013-05-19 |  |  |
| 8200CPC595 |  | Segment Dismantle (DT) |  | 6d | 2012-11-12 A | 2012-11-13 A | 8200CPC585 | 100% | 2012-11-07 | 2012-11-13 | Cal9(S)Pt25 | Other Skill Labour (Civil) [288 h] | DJa |  |  |  |  | CC C | CROSS PASS | CP92 |  | 820_AB | A | 820 | C | 11.21 | 2010 | CP | C090 | EPIW |  |  |  |  |  |  |  |  |  |  |
| 8200CPC600 |  | Cross Passage Excavation & Temp.Support (from DT) |  | 6d | 2012-11-14 A | 2012-11-18 A | 8200CPC595 | 100% | 2012-11-30 | 2012-12-06 | Cal9(S)Pt25 | TBM Excavation [77.3 m3]; Other Skill Labour (Civil) [528 h]; Drilling Jumbo [11 h]; Plant Operator [88 h] | DJa |  |  |  |  | CC C | CROSS PASS | CP92 |  | 820_AB | A | 820 | C | 11.21 | 2010 | CP | C090 | EPIW |  |  | 5.33m |  |  |  |  |  |  |  |
| 8200CPC600b |  | Waterproofing (DT) |  | 9d | 2012-12-01 A | 2012-12-04 A | 8200CPC600 | 100% | 2012-12-15 | 2012-12-28 | Cal9(N) (+235m) | Other Skill Labour (Civil) [672 h]; Plant Operator [112 h]; Drilling Jumbo [14 h]; TBM Excavation [180 m3] | DJa |  |  |  |  | CC C | CROSS PASS | CP92 |  | 820_AB | 1 | 820 | C | 10.2 | 2030 | CP | C090 | EPIW |  |  | 8.64mx14.5m2=125.3m3 |  |  |  |  |  | 0.5m/d |  |
| 8200CPC600c |  | Permanent Beam (DT) |  | 9d | 2012-12-10 A | 2012-12-12 A | 8200CPC600b | 100% | 2012-12-15 | 2012-12-28 | Cal9(N) (+235m) | Other Skill Labour (Civil) [672 h]; Plant Operator [112 h]; Drilling Jumbo [14 h]; TBM Excavation [180 m3] | DJa |  |  |  |  | CC C | CROSS PASS | CP92 |  | 820_AB | 1 | 820 | C | 10.2 | 2030 | CP | C090 | EPIW |  |  | 8.64mx14.5m2=125.3m3 |  |  |  |  |  | 0.5m/d |  |
| 8200CPC601 |  | Probing/Drainage (from DT) |  | 6d | 2014-05-09 A | 2014-05-10 A | 8200TBC925z1 FS+4d | 100% | 2014-05-10 | 2014-05-16 | Cal9(S)Pt25 | Other Skill Labour (Civil) [96 h] | DJa |  |  |  |  | CC C | CROSS PASS | CP92 |  | 820_AB | 1 | 820 | C | 10.2 | 2030 | CP | C090 | EPIW |  |  | Ch138+827>>139+027 |  |  |  |  |  |  |  |
| 8200CPC603 |  | Segment Dismantle (UT) |  | 5d | 2014-05-10 A | 2014-05-10 A | 8200CPC602 | 100% | 2014-05-10 | 2014-05-15 | Cal9(S)Pt25 | Other Skill Labour (Civil) [160 h] | DJa |  |  |  |  | CC C | CROSS PASS | CP92 |  | 820_AB | 1 | 820 | C | 10.2 | 2030 | CP | C090 | EPIW |  |  |  |  |  |  |  |  |  |  |
| 8200CPC602 |  | Cross Passage Excavation & Temp.Support (from DT) |  | 8d | 2014-05-11 A | 2014-05-16 A | 8200CPC600c, 8200CPC600, 8200CPC601, 8200CPC595 | 100% | 2014-05-12 | 2014-05-21 | Cal9(S)Pt25 | TBM Excavation [29 m3]; Other Skill Labour (Civil) [192 h]; Plant Operator [32 h]; Backhoe [64 h] | DJa |  |  |  |  | CC C | CROSS PASS | CP92 |  | 820_AB | A | 820 | C | 11.21 | 2010 | CP | C090 | EPIW |  |  | 2m |  |  |  |  |  |  |  |
| 8200CPC620 |  | Waterproofing (UT) |  | 8d | 2014-05-20 A | 2014-05-24 A | 8200CPC602, 8200CPC595, 8200CPC603 | 100% | 2014-05-21 | 2014-05-29 | Cal9(S)Pt25 | Other Skill Labour (Civil) [256 h] | DJa |  |  |  |  | CC C | CROSS PASS | CP92 |  | 820_AB | A | 820 | C | 11.21 | 2010 | CP | C090 | EPIW |  |  |  |  |  |  |  |  |  |  |
| 8200CPC630a |  | Permanent Slab |  | 6d | 2014-05-26 A | 2014-05-26 A | 8200CPC625c, 8200CPC625b, 8200sum210 FF, 8200y0410 FF | 100% | 2014-05-26 | 2014-05-31 | Cal9(S)Pt25 | Other Skill Labour (Civil) [192 h] | DJa |  |  |  |  | CC C | CROSS PASS | CP92 |  | 820_AB | A | 820 | C | 11.21 | 2010 | CP | C090 | EPIW |  |  |  |  |  |  |  |  |  |  |
| 8200CPC625b |  | Permanent Beam (UT) |  | 8d | 2014-05-29 A | 2014-05-29 A | 8200CPC620 | 100% | 2014-05-29 | 2014-06-07 | Cal9(S)Pt25 | Other Skill Labour (Civil) [256 h] | DJa |  |  |  |  | CC C | CROSS PASS | CP92 |  | 820_AB | A | 820 | C | 11.21 | 2010 | CP | C090 | EPIW |  |  |  |  |  |  |  |  |  |  |
| 8200CPC625c |  | Permanent Lining |  | 6d | 2014-05-31 A | 2014-05-31 A | 8200CPC620, 8200CPC625b | 100% | 2014-05-31 | 2014-06-07 | Cal9(S)Pt25 | Other Skill Labour (Civil) [192 h] | DJa |  |  |  |  | CC C | CROSS PASS | CP92 |  | 820_AB | A | 820 | C | 11.21 | 2010 | CP | C090 | EPIW |  |  |  |  |  |  |  |  |  |  |
|  | 130 | **CP93** |  |  | 2010-09-28 | 2014-06-14 |  |  |  |  |  |  |  |  |  |  |  |  |  |  |  |  |  |  |  |  |  |  |  |  |  |  |  |  |  |  |  |  |  |  |
| 8200CPC650 |  | GI works for CP93 |  | 6d | 2010-09-28 A | 2010-10-06 A | 8200KD1020 FS+141d | 100% | 2011-02-01 | 2011-02-10 | Cal 1 | Other Skill Labour (Civil) [288 h] | DCl | CP | 1 | 2010-10-06 | 2010-09-28 | CC C | CROSS PASS | CP93 | S | 820_AB |  |  |  |  |  |  |  |  |  |  |  |  |  |  |  |  |  | DCl |
| 8200CPC655 |  | Access Works Area 11.15 for Cross Passages CP93 | milestone | 0d | 2011-08-05 A | 2011-08-05 A | 8200TMC370, 8200AC1130 | 100% | 2011-08-31 | 2011-08-31 |  |  | HCh |  |  |  |  | CC C | CROSS PASS | CP93 |  | 820_AB | A | 820 | C | 11.15 | 2010 | CP | C090 | EPIW |  |  |  |  |  |  |  |  |  |  |
| 8200CPC660 |  | TTMS & Site Set up |  | 27d | 2011-11-14 A | 2011-12-15 A | 8200CPC655 FS+179d | 100% | 2012-02-01 | 2012-03-02 | Cal 1 | Other Skill Labour (Civil) [1680 h]; Backhoe [24 h]; Plant Operator [192 h] | HCh |  |  |  |  | CC C | CROSS PASS | CP93 |  | 820_AB | A | 820 | C | 11.15 | 2010 | CP | C090 | EPIW |  |  |  |  |  |  |  |  |  |  |
| 8200CPC662 |  | Install Sleeve Pipes |  | 22d | 2011-12-16 A | 2012-01-14 A | 8200CPC573 SS+26d, 8200CPC655, 8200CPC655 FF, 8200CPC575 SS+26d, 8200CPC650 FF, 8200CPC650, 8200CPC660 | 100% | 2012-01-16 | 2012-02-13 | Cal 1 | Drilling Rig [22 h]; Other Skill Labour (Civil) [1056 h]; Plant Operator [176 h] | CIp | CP | 1 | 2012-01-31 | 2011-08-01 | CC C | CROSS PASS | CP93 | S | 820_AB | A | 820 | C | 11.15 | 2010 | CP | C090 | EPIW | 2011-08-01 | 2011-09-15 | Ch139+032 |  |  |  |  |  |  |  |
| 8200CPC665 |  | Jet Grouting from Surface |  | 135d | 2012-01-16 A | 2012-06-30 A | 8200CPC660, 8200CPC650, 8200CPC655, 8200CPC573 SS+26d, 8200CPC655 FF, 8200CPC650 FF, 8200CPC662, 8200CPC575 SS+26d | 100% | 2012-01-16 | 2012-07-12 | Cal 1 | Drilling Rig [138 h]; Other Skill Labour (Civil) [6624 h]; Plant Operator [1104 h] | CIp | CP | 1 | 2012-01-31 | 2011-08-01 | CC C | CROSS PASS | CP93 | S | 820_AB | A | 820 | C | 11.15 | 2010 | CP | C090 | EPIW | 2011-08-01 | 2011-09-15 | Ch139+032 |  |  |  |  |  |  |  |
| 8200CPC675 |  | Probing/Drainage (DT) |  | 6d | 2012-09-28 A | 2012-10-02 A | 8200CPC665, 8200CPC662, 8200TBC510z FS+24d | 100% | 2012-11-27 | 2012-12-03 | Cal9(S)Pt25 | Other Skill Labour (Civil) [288 h] | DJa |  |  |  |  | CC C | CROSS PASS | CP93 |  | 820_AB | A | 820 | C | 11.15 | 2010 | CP | C090 | EPIW |  |  | 139+032>>>139+232 |  |  |  |  |  |  |  |
| 8200sum230 |  | CP93 | level of effort | 255d | 2012-09-28 A | 2014-06-14 A | 8200CPC675 SS | 100% | 2012-11-27 | 2013-11-18 | Cal9(N)b |  |  |  | 4 |  |  |  |  |  |  | 820_AB |  |  |  |  |  |  |  |  |  |  |  | 2012-05-12 | 2012-05-12 | c93a | 2013-06-08 | 2013-06-08 |  |  |
| 8200CPC685 |  | Segment Dismantle (DT) |  | 6d | 2012-10-03 A | 2012-10-05 A | 8200CPC675 | 100% | 2012-12-04 | 2012-12-10 | Cal9(S)Pt25 | Other Skill Labour (Civil) [288 h] | DJa |  |  |  |  | CC C | CROSS PASS | CP93 |  | 820_AB | A | 820 | C | 11.15 | 2010 | CP | C090 | EPIW |  |  |  |  |  |  |  |  |  |  |
| 8200CPC690 |  | Cross Passage Excavation & Temp.Support (from DT) |  | 7d | 2012-10-06 A | 2012-10-18 A | 8200CPC685 | 100% | 2012-12-11 | 2012-12-18 | Cal9(S)Pt25 | TBM Excavation [83.23 m3]; Other Skill Labour (Civil) [576 h]; Drilling Jumbo [12 h]; Plant Operator [96 h] | DJa |  |  |  |  | CC C | CROSS PASS | CP93 |  | 820_AB | A | 820 | C | 11.15 | 2010 | CP | C090 | EPIW |  |  | 5.74m |  |  |  |  |  |  |  |
| 8200CPC690b |  | Waterproofing (DT) |  | 9d | 2012-11-01 A | 2012-11-05 A | 8200CPC690 | 100% | 2012-12-15 | 2012-12-28 | Cal9(N) (+235m) | Other Skill Labour (Civil) [672 h]; Plant Operator [112 h]; Drilling Jumbo [14 h]; TBM Excavation [180 m3] | DJa |  |  |  |  | CC C | CROSS PASS | CP93 |  | 820_AB | 1 | 820 | C | 10.2 | 2030 | CP | C090 | EPIW |  |  | 8.64mx14.5m2=125.3m3 |  |  |  |  |  | 0.5m/d |  |
| 8200CPC690c |  | Permanent Beam (DT) |  | 9d | 2012-11-06 A | 2012-11-12 A | 8200CPC690b | 100% | 2012-12-29 | 2013-01-09 | Cal9(N) (+235m) | TBM Excavation [180 m3]; Other Skill Labour (Civil) [672 h]; Plant Operator [112 h]; Drilling Jumbo [14 h] | DJa |  |  |  |  | CC C | CROSS PASS | CP93 |  | 820_AB | 1 | 820 | C | 10.2 | 2030 | CP | C090 | EPIW |  |  | 8.64mx14.5m2=125.3m3 |  |  |  |  |  | 0.5m/d |  |
| 8200CPC691 |  | Probing/Drainage (from UT) |  | 6d | 2014-05-21 A | 2014-05-22 A | 8200TBC925z2 FS+19d | 100% | 2014-05-21 | 2014-05-27 | Cal9(S)Pt25 | Other Skill Labour (Civil) [96 h] | DJa |  |  |  |  | CC C | CROSS PASS | CP93 |  | 820_AB | A | 820 | C | 11.21 | 2010 | CP | C090 | EPIW |  |  | 139+017>>>139+217 |  |  |  |  |  |  |  |
| 8200CPC693 |  | Segment Dismantle (UT) |  | 5d | 2014-05-23 A | 2014-05-24 A | 8200CPC692, 8200CPC691 | 100% | 2014-05-23 | 2014-05-28 | Cal9(S)Pt25 | Other Skill Labour (Civil) [160 h] | DJa |  |  |  |  | CC C | CROSS PASS | CP93 |  | 820_AB | A | 820 | C | 11.21 | 2010 | CP | C090 | EPIW |  |  |  |  |  |  |  |  |  |  |
| 8200CPC692 |  | Cross Passage Excavation & Temp.Support (from DT) |  | 8d | 2014-05-24 A | 2014-05-29 A | 8200CPC690, 8200CPC690c, 8200CPC685, 8200CPC691, 8200TBC925, 8200TBC920 | 100% | 2014-05-24 | 2014-06-03 | Cal9(S)Pt25 | TBM Excavation [29 m3]; Other Skill Labour (Civil) [192 h]; Plant Operator [32 h]; Backhoe [64 h] | DJa |  |  |  |  | CC C | CROSS PASS | CP93 |  | 820_AB | A | 820 | C | 11.15 | 2010 | CP | C090 | EPIW |  |  | 2m |  |  |  |  |  |  |  |
| 8200CPC710 |  | Waterproofing (UT) |  | 7d | 2014-05-31 A | 2014-06-06 A | 8200CPC693, 8200CPC692 | 100% | 2014-05-31 | 2014-06-09 | Cal9(S)Pt25 | Other Skill Labour (Civil) [224 h] | DJa |  |  |  |  | CC C | CROSS PASS | CP93 |  | 820_AB | A | 820 | C | 11.15 | 2010 | CP | C090 | EPIW |  |  |  |  |  |  |  |  |  |  |
| 8200CPC720a |  | Permanent Slab |  | 5d | 2014-06-09 A | 2014-06-09 A | 8200y0430 FF, 8200CPC715b, 8200CPC715c, 8200sum230 FF | 100% | 2014-06-09 | 2014-06-14 | Cal9(S)Pt25 | Other Skill Labour (Civil) [160 h] | DJa |  |  |  |  | CC C | CROSS PASS | CP93 |  | 820_AB | A | 820 | C | 11.15 | 2010 | CP | C090 | EPIW |  |  |  |  |  |  |  |  |  |  |
| 8200CPC715b |  | Permanent Beam (UT) |  | 8d | 2014-06-12 A | 2014-06-12 A | 8200CPC710 | 100% | 2014-06-12 | 2014-06-21 | Cal9(S)Pt25 | Other Skill Labour (Civil) [256 h] | DJa |  |  |  |  | CC C | CROSS PASS | CP93 |  | 820_AB | A | 820 | C | 11.15 | 2010 | CP | C090 | EPIW |  |  |  |  |  |  |  |  |  |  |
| 8200CPC715c |  | Permanent Lining |  | 5d | 2014-06-14 A | 2014-06-14 A | 8200CPC710, 8200CPC715b | 100% | 2014-06-14 | 2014-06-19 | Cal9(S)Pt25 | Other Skill Labour (Civil) [160 h] | DJa |  |  |  |  | CC C | CROSS PASS | CP93 |  | 820_AB | A | 820 | C | 11.15 | 2010 | CP | C090 | EPIW |  |  |  |  |  |  |  |  |  |  |

Notes:
- 8200CPC600: Basis & Assumptions: 7.16m
- 8200CPC600b: Basis & Assumptions: 9.62m
- 8200CPC600c: Basis & Assumptions: 9.62m
- 8200CPC690: Basis & Assumptions: 7.35m
- 8200CPC690b: Basis & Assumptions: 9.62m
- 8200CPC690c: Basis & Assumptions: 9.62m
- 8200CPC691: Basis & Assumptions: CP93 TBM 200m away actual date is 27Jul13

| ID | WBS | Activity | Type | Duration | Start | Finish | Predecessors | Complete | Planned start | Planned finish | Calendar | Resources | Responsible by | Classify | Priority A | Intrafor Finish | Intrafor Start | LEVEL 1 | LEVEL 2 | LEVEL 3 | TS & TN | Responsible (bm makes Global) | 820_As-built | SUMMARY | Contracts | Cost Centre | Location of Works | Sub-locationof Works | Phases of Works | Classification of Works | User Start 2 | User Finish 2 | QUANTITY | Sum1 | SUM2 | Order | Works Area | TBM DT s | TBM DT f | TBM UT f | TBM UT s |
| --- | --- | --- | --- | --- | --- | --- | --- | --- | --- | --- | --- | --- | --- | --- | --- | --- | --- | --- | --- | --- | --- | --- | --- | --- | --- | --- | --- | --- | --- | --- | --- | --- | --- | --- | --- | --- | --- | --- | --- | --- | --- |
|  | 140 | **CP94** |  |  | 2010-09-08 | 2014-08-04 |  |  |  |  |  |  |  |  |  |  |  |  |  |  |  |  |  |  |  |  |  |  |  |  |  |  |  |  |  |  |  |  |  |  |  |
| 8200CPC740 |  | GI works for CP94 |  | 12d | 2010-09-08 A | 2010-09-25 A | 8200KD1020 FS+119d | 100% | 2011-02-01 | 2011-02-17 | Cal 1 | Other Skill Labour (Civil) [384 h] | DCl | CP | 1 | 2010-09-25 | 2010-09-08 | CC C | CROSS PASS | CP94 | S | DCl | 820_AB |  |  |  |  |  |  |  |  |  |  |  |  |  |  |  |  |  |  |
| 8200CPC750 |  | Access for Cross Passages CP94 | milestone | 0d | 2012-09-03 A | 2012-09-03 A | 8200TBC520z, 8200KD1020 FS+433d, 8200TMC370 | 100% |  |  |  |  | HCh |  |  |  |  | CC C | CROSS PASS | CP94 |  |  | 820_AB | A | 820 | C | 2010 | CP | C090 | EPIW |  |  |  |  |  |  |  |  |  |  |  |
| 8200CPC759b |  | Preparation for Grouting |  | 24d | 2012-10-03 A | 2012-10-31 A | 8200CPC750, 8200TBC520z FS+28d | 100% |  |  | Cal9(S)Pt25 | Drilling Rig [60 h]; Other Skill Labour (Civil) [3546.7 h] | DJa | CP | 3 | 2013-01-05 | 2012-09-05 | CC C | CROSS PASS | CP95 | S |  | 820_AB | A | 820 | C | 2010 | CP | C090 | EPIW | 2012-05-05 | 2013-01-05 | 139+504>>139+704 | c95 | S | 27 | 12.1 |  |  |  |  |
| 8200CPC759c |  | CP94 Fissure Grouting from Tunnel |  | 50d | 2012-11-01 A | 2012-11-30 A | 8200y0440 FF, 8200CPC759b | 100% | 2012-11-01 | 2012-12-31 | Cal9(S)Pt25 | Drilling Rig [60 h]; Other Skill Labour (Civil) [3546.7 h] | DJa | CP | 3 | 2013-01-05 | 2012-09-05 | CC C | CROSS PASS | CP95 | S |  | 820_AB | A | 820 | C | 2010 | CP | C090 | EPIW | 2012-05-05 | 2013-01-05 | 139+504>>139+704 | c95 | S | 27 | 12.1 |  |  |  |  |
| 8200CPC760 |  | Probing/Drainage (DT) |  | 6d | 2012-11-14 A | 2012-11-16 A | 8200CPC759c FS+7d, 8200TBC520z FS+26d | 100% | 2013-12-02 | 2013-12-30 | Cal9(S)Pt25 | Other Skill Labour (Civil) [288 h]; Drilling Rig [6 h] | DJa |  |  |  |  | CC C | CROSS PASS | CP94 |  |  | 820_AB | A | 820 | C | 2010 | CP | C090 | EPIW |  |  | 139+254>>139+454 |  |  |  |  |  |  |  |  |
| 8200sum250 |  | CP94 | level of effort | 0d | 2012-11-14 A | 2014-07-30 A | 8200CPC760 SS | 100% | 2012-12-31 | 2012-12-31 |  |  |  |  | 4 |  |  |  |  |  |  |  | 820_AB |  |  |  |  |  |  |  |  |  |  | c94a |  |  |  | 2012-06-29 | 2012-06-29 | 2013-07-25 | 2013-07-25 |
| 8200CPC770 |  | Segment Dismantle (DT) |  | 6d | 2012-11-17 A | 2012-11-18 A | 8200CPC760 | 100% | 2012-12-04 | 2012-12-10 | Cal9(S)Pt25 | Other Skill Labour (Civil) [288 h] | DJa |  |  |  |  | CC C | CROSS PASS | CP94 |  |  | 820_AB | A | 820 | C | 2010 | CP | C090 | EPIW |  |  |  |  |  |  |  |  |  |  |  |
| 8200CPC775 |  | Cross Passage Excavation/ Temp.Support (from DT) |  | 7d | 2012-11-19 A | 2012-12-23 A | 8200CPC770, 8200CPC770 FF | 100% | 2012-12-11 | 2012-12-18 | Cal9(S)Pt25 | TBM Excavation [84.7 m3]; Other Skill Labour (Civil) [576 h]; Drilling Jumbo [12 h]; Plant Operator [96 h] | DJa |  |  |  |  | CC C | CROSS PASS | CP94 |  |  | 820_AB | A | 820 | C | 2010 | CP | C090 | EPIW |  |  | 5.84m |  |  |  |  |  |  |  |  |
| 8200CPC775b |  | Waterproofing (DT) |  | 9d | 2013-02-01 A | 2013-02-04 A | 8200CPC775 | 100% | 2013-07-02 | 2013-07-12 | Cal9(S)Pt25 | TBM Excavation [84.7 m3]; Other Skill Labour (Civil) [144 h]; Drilling Jumbo [12 h]; Plant Operator [96 h] | DJa |  |  |  |  | CC C | CROSS PASS | CP94 |  |  | 820_AB | A | 820 | C | 2010 | CP | C090 | EPIW |  |  | 5.84m |  |  |  |  |  |  |  |  |
| 8200CPC775c |  | Permanent Beam (DT) |  | 9d | 2013-02-15 A | 2013-02-18 A | 8200CPC775b | 100% | 2013-07-13 | 2013-07-24 | Cal9(S)Pt25 | Drilling Jumbo [12 h]; Plant Operator [96 h]; TBM Excavation [84.7 m3]; Other Skill Labour (Civil) [576 h] | DJa |  |  |  |  | CC C | CROSS PASS | CP94 |  |  | 820_AB | A | 820 | C | 2010 | CP | C090 | EPIW |  |  | 5.84m |  |  |  |  |  |  |  |  |
| 8200CPC776 |  | Probing/Drainage (from DT) |  | 6d | 2014-07-14 A | 2014-07-19 A | 8200CPC775c, 8200TBC930z FS+8d | 100% | 2014-07-14 | 2014-07-21 | Cal9(S)Pt25 | Other Skill Labour (Civil) [96 h] | DJa |  |  |  |  | CC C | CROSS PASS | CP94 |  |  | 820_AB | A | 820 | C | 2010 | CP | C090 | EPIW |  |  | 139+277>>>139+477 |  |  |  | 11.21 |  |  |  |  |
| 8200CPC778 |  | Segment Dismantle (UT) |  | 5d | 2014-07-14 A | 2014-07-19 A | 8200CPC777, 8200CPC776 | 100% |  |  | Cal9(S)Pt25 | Other Skill Labour (Civil) [160 h] | DJa |  |  |  |  | CC C | CROSS PASS | CP94 |  |  | 820_AB | A | 820 | C | 2010 | CP | C090 | EPIW |  |  |  |  |  |  | 11.21 |  |  |  |  |
| 8200CPC777 |  | Cross Passage Excavation /Temp.Support (from DT) |  | 8d | 2014-07-19 A | 2014-07-23 A | 8200TBC930 SS+20d, 8200CPC775, 8200CPC776 | 100% | 2014-07-19 | 2014-07-28 | Cal9(S)Pt25 | TBM Excavation [71.2 m3]; Other Skill Labour (Civil) [192 h]; Backhoe [64 h]; Plant Operator [64 h] | DJa |  |  |  |  | CC C | CROSS PASS | CP94 |  |  | 820_AB | A | 820 | C | 2010 | CP | C090 | EPIW |  |  | 2m |  |  |  |  |  |  |  |  |
| 8200CPC795 |  | Waterproofing (UT) |  | 8d | 2014-07-25 A | 2014-07-29 A | 8200CPC778 | 100% | 2014-07-25 | 2014-08-02 | Cal9(S)Pt25 | Other Skill Labour (Civil) [256 h] | DJa |  |  |  |  | CC C | CROSS PASS | CP94 |  |  | 820_AB | A | 820 | C | 2010 | CP | C090 | EPIW |  |  |  |  |  |  |  |  |  |  |  |
| 8200CPC800b |  | Permanent Slab |  | 5d | 2014-07-30 A | 2014-07-30 A | 8200sum250 FF, 8200y0450 FF, 8200CPC800a | 100% | 2014-07-30 | 2014-08-04 | Cal9(S)Pt25 | Other Skill Labour (Civil) [160 h] | DJa |  |  |  |  | CC C | CROSS PASS | CP94 |  |  | 820_AB | A | 820 | C | 2010 | CP | C090 | EPIW |  |  |  |  |  |  |  |  |  |  |  |
| 8200CPC800 |  | Permanent Beam (UT) |  | 8d | 2014-07-31 A | 2014-08-01 A | 8200CPC795 | 100% | 2014-07-31 | 2014-08-09 | Cal9(S)Pt25 | Other Skill Labour (Civil) [256 h] | DJa |  |  |  |  | CC C | CROSS PASS | CP94 |  |  | 820_AB | A | 820 | C | 2010 | CP | C090 | EPIW |  |  |  |  |  |  |  |  |  |  |  |
| 8200CPC800a |  | Permanent Lining |  | 5d | 2014-08-02 A | 2014-08-04 A | 8200CPC800 | 100% | 2014-08-02 | 2014-08-07 | Cal9(S)Pt25 | Other Skill Labour (Civil) [160 h] | DJa |  |  |  |  | CC C | CROSS PASS | CP94 |  |  | 820_AB | A | 820 | C | 2010 | CP | C090 | EPIW |  |  |  |  |  |  |  |  |  |  |  |
|  | 150 | **CP95 & Pump Sump** |  |  | 2010-11-09 | 2014-09-12 |  |  |  |  |  |  |  |  |  |  |  |  |  |  |  |  |  |  |  |  |  |  |  |  |  |  |  |  |  |  |  |  |  |  |  |
| 8200CPC810 |  | GI works for CP95 & Sump |  | 12d | 2010-11-09 A | 2010-11-23 A | 8200KD1020 FS+149d | 100% | 2011-02-01 | 2011-02-17 | Cal 1 | Drilling Rig [8.62 h]; Other Skill Labour (Civil) [414 h] | DCl | CP | 1 | 2010-11-23 | 2010-11-09 | CC C | CROSS PASS | CP95 | S | DCl | 820_AB |  |  | C |  |  |  |  |  |  |  |  |  |  |  |  |  |  |  |
| 8200CPC812 |  | Preparation for Grouting |  | 26d | 2012-11-24 A | 2012-12-08 A | 8200TBC530z1 FS+25d, 8200CPC810 | 100% | 2012-11-24 | 2012-12-24 | Cal9(S)Pt25 | Drilling Rig [60 h]; Other Skill Labour (Civil) [3546.7 h] | DJa | CP | 3 | 2013-01-05 | 2012-09-05 | CC C | CROSS PASS | CP95 | S |  | 820_AB | A | 820 | C | 2010 | CP | C090 | EPIW | 2012-05-05 | 2013-01-05 | 139+504>>139+704 | c95 | S | 27 | 12.1 |  |  |  |  |
| 8200CPC815 |  | CP95 Fissure Grouting from Tunnel |  | 100d | 2012-12-08 A | 2012-12-22 A | 8200TBC530z1 FS+21d, 8200CPC812 | 100% | 2012-12-08 | 2013-05-27 | Cal9(S)Pt25 | Drilling Rig [60 h]; Other Skill Labour (Civil) [3546.7 h] | DJa | CP | 3 | 2013-01-05 | 2012-09-05 | CC C | CROSS PASS | CP95 | S |  | 820_AB | A | 820 | C | 2010 | CP | C090 | EPIW | 2012-05-05 | 2013-01-05 | 139+504>>139+704 | c95 | S | 27 | 12.1 |  |  |  |  |
| 8200CPC820 |  | Probing/Drainage (DT) |  | 6d | 2012-12-24 A | 2012-12-29 A | 8200TBC570, 8200CPC812, 8200CPC815 | 100% | 2012-12-24 | 2013-01-02 | Cal9(S)Pt25 | Other Skill Labour (Civil) [288 h]; Drilling Rig [6 h] | DJa |  |  |  |  | CC C | CROSS PASS | CP95 |  |  | 820_AB | A | 820 | C | 2010 | CP | C090 | EPIW |  |  |  |  |  |  | 12.1 |  |  |  |  |
| 8200CPC830 |  | Segment Dismantle (DT) |  | 6d | 2012-12-31 A | 2013-01-03 A | 8200CPC820 | 100% | 2012-12-31 | 2013-02-14 | Cal9(S)Pt25 | Other Skill Labour (Civil) [288 h] | DJa |  |  |  |  | CC C | CROSS PASS | CP95 |  |  | 820_AB | A | 820 | C | 2010 | CP | C090 | EPIW |  |  |  |  |  |  | 12.1 |  |  |  |  |
| 8200CPC835 |  | Cross Passage & Sump pit Excavation/ Temp.Support (from DT) |  | 7d | 2013-01-04 A | 2013-08-22 A | 8200CPC830 | 100% | 2013-02-14 | 2013-02-21 | Cal9(S)Pt25 | TBM Excavation [81.9 m3]; Other Skill Labour (Civil) [528 h]; Drilling Jumbo [11 h]; Plant Operator [88 h] | DJa |  |  |  |  | CC C | CROSS PASS | CP95 |  |  | 820_AB | A | 820 | C | 2010 | CP | C090 | EPIW |  |  | 5.65m |  |  |  | 12.1 |  |  |  |  |
| 8200CPC835b |  | Waterproofing (DT) |  | 9d | 2013-08-26 A | 2013-09-16 A | 8200CPC835 | 100% | 2013-09-02 | 2013-09-12 | Cal9(S)Pt25 | TBM Excavation [81.9 m3]; Other Skill Labour (Civil) [528 h]; Drilling Jumbo [11 h]; Plant Operator [88 h] | DJa |  |  |  |  | CC C | CROSS PASS | CP95 |  |  | 820_AB | A | 820 | C | 2010 | CP | C090 | EPIW |  |  | 5.65m |  |  |  | 12.1 |  |  |  |  |
| 8200CPC860 |  | Sump pit Concreting |  | 22d | 2013-09-05 A | 2013-09-27 A | 8200CPC835 | 100% | 2013-09-05 | 2013-10-04 | Cal9(S)Pt25 | Other Skill Labour (Civil) [352 h]; Steel Fixer [352 h]; Concretor [352 h]; Carpenter [352 h] | DJa |  |  |  |  | CC C | CROSS PASS | CP95 |  |  | 820_AB | A | 820 | C | 2010 | CP | C090 | EPIW |  |  |  |  |  |  | 12.1 |  |  |  |  |
| 8200CPC835c |  | Permanent Beam (DT) |  | 9d | 2013-09-13 A | 2013-09-25 A | 8200CPC835b | 100% |  |  | Cal9(S)Pt25 | TBM Excavation [81.9 m3]; Other Skill Labour (Civil) [144 h]; Drilling Jumbo [11 h]; Plant Operator [88 h] | DJa |  |  |  |  | CC C | CROSS PASS | CP95 |  |  | 820_AB | A | 820 | C | 2010 | CP | C090 | EPIW |  |  | 5.65m |  |  |  | 12.1 |  |  |  |  |
| 8200CPC853 |  | Segment Dismantle (UT) |  | 6d | 2014-08-12 A | 2014-08-16 A | 8200TBC935z FS+5d, 8200CPC860 | 100% | 2014-08-12 | 2014-08-18 | Cal9(S)Pt25 | Other Skill Labour (Civil) [96 h] | DJa |  |  |  |  | CC C | CROSS PASS | CP95 |  |  | 820_AB | A | 820 | C | 2010 | CP | C090 | EPIW |  |  |  |  |  |  | 11.21 |  |  |  |  |
| 8200CPC850 |  | Cross Passage Excavation/Temp.Support U/T (from DT) |  | 8d | 2014-08-18 A | 2014-08-23 A | 8200CPC835c, 8200TBC930 FS+9d, 8200CPC835, 8200TBC935z FS+19d | 100% | 2014-08-18 | 2014-08-27 | Cal9(S)Pt25 | TBM Excavation [29 m3]; Other Skill Labour (Civil) [192 h]; Plant Operator [32 h]; Backhoe [64 h] | DJa |  |  |  |  | CC C | CROSS PASS | CP95 |  |  | 820_AB | A | 820 | C | 2010 | CP | C090 | EPIW |  |  | 2m |  |  |  | 12.1 |  |  |  |  |
| 8200CPC855 |  | Waterproofing (UT) |  | 8d | 2014-08-26 A | 2014-08-27 A | 8200CPC850, 8200CPC853 | 100% | 2014-08-26 | 2014-09-03 | Cal9(S)Pt25 | Other Skill Labour (Civil) [256 h] | DJa |  |  |  |  | CC C | CROSS PASS | CP95 |  |  | 820_AB | A | 820 | C | 2010 | CP | C090 | EPIW |  |  |  |  |  |  | 12.1 |  |  |  |  |
| 8200CPC865 |  | Permanet Beam, Lining& Slab (UT) |  | 10d | 2014-08-28 A | 2014-09-12 A | 8200CPC855 | 100% | 2014-08-28 | 2014-09-08 | Cal9(S)Pt25 | Other Skill Labour (Civil) [320 h] | DJa |  |  |  |  | CC C | CROSS PASS | CP95 |  |  | 820_AB | A | 820 | C | 2010 | CP | C090 | EPIW |  |  |  |  |  |  | 12.1 |  |  |  |  |

Notes:
- 8200CPC775: Basis & Assumptions: 7.42m
- 8200CPC775b: Basis & Assumptions: 7.42m
- 8200CPC775c: Basis & Assumptions: 7.42m
- 8200CPC835: Basis & Assumptions: 7.14m

| ID | WBS | Activity | Type | Duration | Start | Finish | Predecessors | Complete | Planned start | Planned finish | Constraint | Calendar | Resources | Responsible by | Classify | Priority A | Intrafor Finish | Intrafor Start | LEVEL 1 | LEVEL 2 | LEVEL 3 | TS & TN | Responsible (bm makes Global) | Cost Centre | 820_As-built | User Start 2 | User Finish 2 | QUANTITY | Sum1 | SUM2 | Order | SUMMARY | Contracts | Works Area | Location of Works | Sub-locationof Works | Phases of Works | Classification of Works |
| --- | --- | --- | --- | --- | --- | --- | --- | --- | --- | --- | --- | --- | --- | --- | --- | --- | --- | --- | --- | --- | --- | --- | --- | --- | --- | --- | --- | --- | --- | --- | --- | --- | --- | --- | --- | --- | --- | --- |
|  | 160 | **CP96** |  |  | 2010-11-20 | 2014-09-24 |  |  |  |  |  |  |  |  |  |  |  |  |  |  |  |  |  |  |  |  |  |  |  |  |  |  |  |  |  |  |  |  |
| 8200CPC868 |  | GI works for CP96 |  | 10d | 2010-11-20 A | 2010-12-02 A |  | 100% | 2011-02-01 | 2011-02-15 |  | Cal 1 | Drilling Rig [9 h]; Other Skill Labour (Civil) [432 h] | DCl | CP | 1 | 2010-12-02 | 2010-11-20 | CC C | CROSS PASS | CP96 | S | DCl | C | 820_AB |  |  |  |  |  |  |  |  |  |  |  |  |  |
| 8200CPC870 |  | Preparation works for Grouting |  | 26d | 2013-02-18 A | 2013-02-28 A | 8200TBC530z2 FS+21d, 8200CPC868, 8200CPC812 | 100% | 2013-02-18 | 2013-03-19 |  | Cal9(S)Pt25 | Drilling Rig [8 h]; Other Skill Labour (Civil) [832 h]; Plant Operator [208 h] | DJa | CP | 3 | 2013-05-28 | 2013-02-25 | CC C | CROSS PASS | CP96 | S |  | C | 820_AB | 2013-02-25 | 2013-05-28 | 139+711>>>139+911 | c96 | S | 29 | A | 820 | 12.1 | 2010 | CP | C090 | EPIW |
| 8200CPC871 |  | CP96 Fissure Grouting from Tunnel |  | 75d | 2013-03-01 A | 2013-03-23 A | 8200TBC530z2 FS+21d, 8200CPC870, 8200TBC540 FS-1d, 8200CPC868 | 100% | 2013-03-01 | 2013-06-07 |  | Cal9(S)Pt25 | Drilling Rig [8 h]; Other Skill Labour (Civil) [2400 h]; Plant Operator [566 h] | DJa | CP | 3 | 2013-05-28 | 2013-02-25 | CC C | CROSS PASS | CP96 | S |  | C | 820_AB | 2013-02-25 | 2013-05-28 | 139+711>>>139+911 | c96 | S | 29 | A | 820 | 12.1 | 2010 | CP | C090 | EPIW |
| 8200CPC990 |  | Probing/Drainage (DT) |  | 6d | 2013-05-11 A | 2013-05-13 A | 8200CPC871 | 100% | 2013-05-11 | 2013-05-18 |  | Cal9(S)Pt25 | Drilling Rig [3 h]; Other Skill Labour (Civil) [144 h] | DJa |  |  |  |  | CC C | CROSS PASS | CP96 |  |  | C | 820_AB |  |  | 139+729>>139+929 |  |  |  | A | 820 | 11.21 | 2010 | CP | C090 | EPIW |
| 8200CPC1000 |  | Segment Dismantle (DT) |  | 6d | 2013-05-14 A | 2013-05-18 A | 8200CPC990 | 100% | 2013-05-14 | 2013-05-22 |  | Cal9(S)Pt25 | Other Skill Labour (Civil) [192 h] | DJa |  |  |  |  | CC C | CROSS PASS | CP96 |  |  | C | 820_AB |  |  |  |  |  |  | A | 820 | 11.21 | 2010 | CP | C090 | EPIW |
| 8200CPC1010 |  | Cross Passage Excavation & Temp.Support (DT) |  | 6d | 2013-05-19 A | 2013-09-22 A | 8200CPC1000 | 100% | 2013-05-21 | 2013-05-27 |  | Cal9(S)Pt25 | TBM Excavation [29 m3]; Other Skill Labour (Civil) [192 h]; Drilling Jumbo [4 h]; Plant Operator [32 h] | DJa |  |  |  |  | CC C | CROSS PASS | CP96 |  |  | C | 820_AB |  |  | 2m |  |  |  | A | 820 | 12.1 | 2010 | CP | C090 | EPIW |
| 8200CPC1020 |  | Waterproofing (DT) |  | 7d | 2013-09-24 A | 2013-09-25 A | 8200CPC1010 | 100% | 2013-09-24 | 2013-10-02 |  | Cal9(S)Pt25 | Other Skill Labour (Civil) [288 h] | DJa |  |  |  |  | CC C | CROSS PASS | CP96 |  |  | C | 820_AB |  |  |  |  |  |  | A | 820 | 12.1 | 2010 | CP | C090 | EPIW |
| 8200CPC1050 |  | Permanent Slab (DT) |  | 5d | 2013-09-26 A | 2013-09-26 A | 8200CPC1030, 8200CPC1040 | 100% | 2013-09-26 | 2013-10-02 |  | Cal9(S)Pt25 | Other Skill Labour (Civil) [288 h] | DJa |  |  |  |  | CC C | CROSS PASS | CP96 |  |  | C | 820_AB |  |  |  |  |  |  | A | 820 | 12.1 | 2010 | CP | C090 | EPIW |
| 8200CPC1030 |  | Permanent Beam (DT) |  | 8d | 2013-09-27 A | 2013-09-30 A | 8200CPC1020 | 100% | 2013-09-27 | 2013-10-07 |  | Cal9(S)Pt25 | Other Skill Labour (Civil) [144 h]; Concretor [144 h]; Carpenter [144 h]; Steel Fixer [144 h] | DJa |  |  |  |  | CC C | CROSS PASS | CP96 |  |  | C | 820_AB |  |  |  |  |  |  | A | 820 | 12.1 | 2010 | CP | C090 | EPIW |
| 8200CPC1040 |  | Permanent Lining (DT) |  | 5d | 2013-09-27 A | 2013-09-30 A | 8200CPC1030, 8200CPC1020 FS+3d | 100% | 2013-09-27 | 2013-10-03 |  | Cal9(S)Pt25 | Other Skill Labour (Civil) [96 h]; Steel Fixer [96 h]; Concretor [96 h]; Carpenter [96 h] | DJa |  |  |  |  | CC C | CROSS PASS | CP96 |  |  | C | 820_AB |  |  |  |  |  |  | A | 820 | 12.1 | 2010 | CP | C090 | EPIW |
| 8200CPC879 |  | Probing/Drainage (from UT) |  | 6d | 2014-09-03 A | 2014-09-04 A | 8200TBC940z FS+18d, 8200CPC1050, 8200CPC871 | 100% | 2014-09-03 | 2014-09-11 |  | Cal9(S)Pt25 | Other Skill Labour (Civil) [96 h] | DJa |  |  |  |  | CC C | CROSS PASS | CP96 |  |  | C | 820_AB |  |  | 139+729>>139+929 |  |  |  | A | 820 | 11.21 | 2010 | CP | C090 | EPIW |
| 8200CPC881 |  | Segment Dismantle (UT) |  | 6d | 2014-09-04 A | 2014-09-08 A | 8200CPC879 | 100% | 2014-09-04 | 2014-09-12 |  | Cal9(S)Pt25 | Other Skill Labour (Civil) [96 h] | DJa |  |  |  |  | CC C | CROSS PASS | CP96 |  |  | C | 820_AB |  |  |  |  |  |  | A | 820 | 11.21 | 2010 | CP | C090 | EPIW |
| 8200CPC884 |  | Cross Passage Excavation & Temp.Support (from UT) |  | 6d | 2014-09-11 A | 2014-09-15 A | 8200TBC940 FS+21d, 8200CPC881 | 100% | 2014-09-11 | 2014-09-17 |  | Cal9(S)Pt25 | TBM Excavation [29 m3]; Other Skill Labour (Civil) [192 h]; Plant Operator [32 h]; Backhoe [48 h] | DJa |  |  |  |  | CC C | CROSS PASS | CP96 |  |  | C | 820_AB |  |  | 2m |  |  |  | A | 820 | 12.1 | 2010 | CP | C090 | EPIW |
| 8200CPC886 |  | Waterproofing |  | 7d | 2014-09-17 A | 2014-09-18 A | 8200CPC884 | 100% | 2014-09-17 | 2014-09-25 |  | Cal9(S)Pt25 | Other Skill Labour (Civil) [224 h] | DJa |  |  |  |  | CC C | CROSS PASS | CP96 |  |  | C | 820_AB |  |  |  |  |  |  | A | 820 | 12.1 | 2010 | CP | C090 | EPIW |
| 8200CPC890a |  | Permanent Slab |  | 5d | 2014-09-19 A | 2014-09-19 A | 8200y0490 FF, 8200CPC888c, 8200CPC888b | 100% | 2014-09-20 | 2014-09-25 |  | Cal9(S)Pt25 | Other Skill Labour (Civil) [160 h] | DJa |  |  |  |  | CC C | CROSS PASS | CP96 |  |  | C | 820_AB |  |  |  |  |  |  | A | 820 | 12.1 | 2010 | CP | C090 | EPIW |
| 8200CPC888b |  | Permanent Beam |  | 8d | 2014-09-22 A | 2014-09-22 A | 8200CPC886 | 100% | 2014-09-22 | 2014-09-30 |  | Cal9(S)Pt25 | Other Skill Labour (Civil) [256 h] | DJa |  |  |  |  | CC C | CROSS PASS | CP96 |  |  | C | 820_AB |  |  |  |  |  |  | A | 820 | 12.1 | 2010 | CP | C090 | EPIW |
| 8200CPC888c |  | Permanent Lining |  | 5d | 2014-09-24 A | 2014-09-24 A | 8200CPC888b, 8200CPC886 FS+3d | 100% | 2014-09-24 | 2014-09-29 |  | Cal9(S)Pt25 | Other Skill Labour (Civil) [160 h] | DJa |  |  |  |  | CC C | CROSS PASS | CP96 |  |  | C | 820_AB |  |  |  |  |  |  | A | 820 | 12.1 | 2010 | CP | C090 | EPIW |
|  | 170 | **CP97** |  |  | 2010-11-26 | 2014-12-16 |  |  |  |  |  |  |  |  |  |  |  |  |  |  |  |  |  |  |  |  |  |  |  |  |  |  |  |  |  |  |  |  |
| 8200CPC895 |  | GI works for CP97 |  | 6d | 2010-11-26 A | 2010-12-03 A | 8200KD1020 FS+177d | 100% | 2011-02-01 | 2011-02-10 |  | Cal 1 | Drilling Rig [7 h]; Other Skill Labour (Civil) [336 h] | DCl | CP | 1 | 2010-12-03 | 2010-11-26 | CC C | CROSS PASS | CP97 | S | DCl | C | 820_AB |  |  |  |  |  |  |  |  |  |  |  |  |  |
| 8200CPC900 |  | Access Works Area 12.1 for Cross Passages CP97 | milestone | 0d | 2011-08-05 A | 2011-08-05 A | 8200AC1410, 8200KD1020 FS+553d, 8200TMC370 | 100% | 2012-01-15 | 2012-01-15 |  |  |  | HCh |  |  |  |  | CC C | CROSS PASS | CP97 |  |  | C | 820_AB |  |  |  |  |  |  | A | 820 | 12.1 | 2010 | CP | C090 | EPIW |
| 8200CPC902 |  | TTMS (Stage 1) |  | 24d | 2011-12-14 A | 2012-01-14 A | 8200CPC900 FS+106d | 100% | 2012-01-16 | 2012-02-15 | as late as possible | Cal 1 | Plant Operator [192 h]; Other Skill Labour (Civil) [1152 h]; Backhoe [24 h] | HCh |  |  |  |  | CC C | CROSS PASS | CP97 |  |  | C | 820_AB |  |  |  |  |  |  | A | 820 | 12.1 | 2010 | CP | C090 | EPIW |
| 8200CPC845 |  | CP97 Jet Grouting from Surface | level of effort | 225d | 2012-01-16 A | 2012-12-01 A | 8200CPC903 SS, 8200CPC902a SS | 100% | 2012-01-16 | 2012-10-31 |  | Cal9(S)Pt25 | Drilling Rig; Other Skill Labour (Civil) [5664 h] |  | CP | 3 |  |  | CC C | CROSS PASS | CP95 | S |  | C | 820_AB | 2012-05-05 | 2013-01-05 | 139+504>>139+704 | c97 |  |  | A | 820 | 12.1 | 2010 | CP | C090 | EPIW |
| 8200CPC902a |  | Install Sleeve Pipes |  | 24d | 2012-01-16 A | 2012-02-16 A | 8200CPC895, 8200CPC902, 8200CPC900 | 100% | 2012-01-16 | 2012-02-15 |  | Cal 1 | Drilling Rig [20 h]; Other Skill Labour (Civil) [960 h]; Plant Operator [160 h] | CIp | Cp | 2 | 2012-05-03 | 2011-12-05 | CC C | CROSS PASS | CP97 | S |  | C | 820_AB | 2011-12-05 | 2012-02-03 | Ch139+951 |  |  |  | A | 820 | 12.1 | 2010 | CP | C090 | EPIW |
| 8200CPC903 |  | Jet Grouting from Surface for Down Track Tunnel |  | 80d | 2012-03-01 A | 2012-04-30 A | 8200CPC895, 8200CPC902, 8200CPC900, 8200CPC902a | 100% | 2012-02-16 | 2012-05-31 |  | Cal 1 | Drilling Rig [103 h]; Other Skill Labour (Civil) [4944 h]; Plant Operator [824 h] | CIp | Cp | 2 | 2012-05-03 | 2011-12-05 | CC C | CROSS PASS | CP97 | S |  | C | 820_AB | 2011-12-05 | 2012-02-03 | Ch139+951 |  |  |  | A | 820 | 12.1 | 2010 | CP | C090 | EPIW |
| 8200CPC903b |  | TTMS (Stage 2) Reinstate TTMS for Stage 4 |  | 35d | 2012-05-02 A | 2012-05-31 A | 8200CPC902a, 8200CPC903 | 100% | 2012-06-01 | 2012-07-17 |  | Cal 1 | Other Skill Labour (Civil) [1680 h]; Backhoe [35 h]; Plant Operator [280 h] | HCh |  |  |  |  | CC C | CROSS PASS | CP97 |  |  | C | 820_AB |  |  |  |  |  |  | A | 820 | 12.1 | 2010 | CP | C090 | EPIW |
| 8200CPC903c |  | Install Sleeve Pipes |  | 11d | 2012-06-01 A | 2012-09-19 A | 8200CPC902, 8200CPC903b, 8200CPC895, 8200CPC900, 8200y0500 FF, 8200CPC845 FF | 100% | 2012-06-01 | 2012-06-14 |  | Cal 1 | Drilling Rig [11 h]; Other Skill Labour (Civil) [528 h]; Plant Operator [88 h] | CIp | Cp | 2 |  |  | CC C | CROSS PASS | CP97 | S |  | C | 820_AB |  |  | Ch139+951 |  |  |  | A | 820 | 12.1 | 2010 | CP | C090 | EPIW |
| 8200CPC904 |  | Jet Grouting from Surface for Up Track Tunnel |  | 72d | 2012-09-20 A | 2012-11-24 A | 8200CPC845 FF, 8200CPC903b, 8200CPC902, 8200y0500 FF, 8200CPC900, 8200CPC903c, 8200CPC895 | 100% | 2013-09-21 | 2013-12-16 |  | Cal 1 | Drilling Rig [72 h]; Other Skill Labour (Civil) [3456 h]; Plant Operator [576 h] | CIp | Cp | 2 |  |  | CC C | CROSS PASS | CP97 | S |  | C | 820_AB |  |  | Ch139+951 |  |  |  | A | 820 | 12.1 | 2010 | CP | C090 | EPIW |
| 8200CPC915 |  | Probing/Drainage (UT) (after TBM removal) |  | 3d | 2014-11-17 A | 2014-11-19 A | 8200CPC904, 8200TBC975, 8200CPC1250, 8200TBC955z | 100% |  |  |  | Cal9(S)Pt25 | Other Skill Labour (Civil) [48 h] | DJa |  |  |  |  | CC C | CROSS PASS | CP97 |  |  | C | 820_AB |  |  |  |  |  |  | A | 820 | 11.21 | 2010 | CP | C090 | EPIW |
| 8200CPC917 |  | Segment Dismantle (UT) |  | 3d | 2014-11-19 A | 2014-11-20 A | 8200CPC915 | 100% | 2014-11-19 | 2014-11-21 |  | Cal9(S)Pt25 | Other Skill Labour (Civil) [48 h] | DJa |  |  |  |  | CC C | CROSS PASS | CP97 |  |  | C | 820_AB |  |  |  |  |  |  | A | 820 | 11.21 | 2010 | CP | C090 | EPIW |
| 8200CPC920 |  | Cross Passage Excavation & Temp.Support (from UT) |  | 5d | 2014-11-20 A | 2014-12-01 A | 8200CPC917 FS+2d, 8200TBC955 FS+21d | 100% | 2014-11-20 | 2014-11-25 |  | Cal9(S)Pt25 | Other Skill Labour (Civil) [160 h]; TBM Excavation [29 m3]; Backhoe [40 h]; Plant Operator [32 h] | DJa |  |  |  |  | CC C | CROSS PASS | CP97 |  |  | C | 820_AB |  |  | 2m |  |  |  | A | 820 | 12.1 | 2010 | CP | C090 | EPIW |
| 8200CPC922 |  | Waterproofing |  | 3d | 2014-12-02 A | 2014-12-05 A | 8200CPC920 | 100% | 2014-12-02 | 2014-12-04 |  | Cal9(S)Pt25 | Other Skill Labour (Civil) [96 h] | DJa |  |  |  |  | CC C | CROSS PASS | CP97 |  |  | C | 820_AB |  |  |  |  |  |  | A | 820 | 12.1 | 2010 | CP | C090 | EPIW |
| 8200CPC926a |  | Permanent Slab |  | 3d | 2014-12-08 A | 2014-12-09 A | 8200y0510 FF, 8200CPC924c, 8200CPC924b | 100% | 2014-12-08 | 2014-12-10 |  | Cal9(S)Pt25 | Other Skill Labour (Civil) [96 h] | DJa |  |  |  |  | CC C | CROSS PASS | CP97 |  |  | C | 820_AB |  |  |  |  |  |  | A | 820 | 12.1 | 2010 | CP | C090 | EPIW |
| 8200CPC924b |  | Permanent Beam |  | 3d | 2014-12-11 A | 2014-12-13 A | 8200CPC922 | 100% |  |  |  | Cal9(S)Pt25 | Other Skill Labour (Civil) [96 h] | DJa |  |  |  |  | CC C | CROSS PASS | CP97 |  |  | C | 820_AB |  |  |  |  |  |  | A | 820 | 12.1 | 2010 | CP | C090 | EPIW |
| 8200CPC924c |  | Permanent Lining |  | 3d | 2014-12-16 A | 2014-12-16 A | 8200CPC924b, 8200CPC922 | 100% | 2014-12-16 | 2014-12-18 |  | Cal9(S)Pt25 | Other Skill Labour (Civil) [96 h] | DJa |  |  |  |  | CC C | CROSS PASS | CP97 |  |  | C | 820_AB |  |  |  |  |  |  | A | 820 | 12.1 | 2010 | CP | C090 | EPIW |

Notes:
- 8200CPC1010: Basis & Assumptions: 6.64m
- 8200CPC884: Basis & Assumptions: 6.64m
- 8200CPC920: Basis & Assumptions: 5.62m

| ID | WBS | Activity | Type | Duration | Start | Finish | Predecessors | Complete | Planned start | Planned finish | Calendar | Resources | QUANTITY | Responsible by | Classify | Priority A | LEVEL 1 | LEVEL 2 | LEVEL 3 | SUMMARY | TS & TN | Contracts | Cost Centre | Works Area | Location of Works | Sub-locationof Works | Phases of Works | Classification of Works | 820_As-built | Intrafor Finish | Intrafor Start | User Start 2 | User Finish 2 | Sum1 | SUM2 | Order |
| --- | --- | --- | --- | --- | --- | --- | --- | --- | --- | --- | --- | --- | --- | --- | --- | --- | --- | --- | --- | --- | --- | --- | --- | --- | --- | --- | --- | --- | --- | --- | --- | --- | --- | --- | --- | --- |
|  | 1 | **Additional Jet Grout of CP97 U/T** |  |  | 2014-01-20 | 2014-07-29 |  |  |  |  |  |  |  |  |  |  |  |  |  |  |  |  |  |  |  |  |  |  |  |  |  |  |  |  |  |  |
| 8200CPC1130 |  | Mobilization |  | 1d | 2014-01-20 A | 2014-01-20 A | 8200CPC845 | 100% | 2014-01-21 | 2014-01-21 | Cal 1 |  | Ch139+951 | CIp | Cp | 2 | CC C | CROSS PASS | CP97 | A | S | 820 | C | 12.1 | 2010 | CP | C090 | EPIW | 820_AB |  |  |  |  |  |  |  |
| 8200CPC1140 |  | Steel Sleeve pipe installation |  | 12d | 2014-01-21 A | 2014-02-06 A | 8200CPC1130 | 100% |  |  | Cal 1 | Other Skill Labour (Civil) [192 h] | Ch139+951 | CIp | Cp | 2 | CC C | CROSS PASS | CP97 | A | S | 820 | C | 12.1 | 2010 | CP | C090 | EPIW | 820_AB |  |  |  |  |  |  |  |
| 8200CPC1150 |  | Mobilization of Pre-drilling rig and mixing plant |  | 3d | 2014-02-07 A | 2014-02-10 A | 8200CPC1140 | 100% |  |  | Cal 1 | Other Skill Labour (Civil) [48 h]; Drilling Rig [48 h]; Plant Operator [48 h] | Ch139+951 | CIp | Cp | 2 | CC C | CROSS PASS | CP97 | A | S | 820 | C | 12.1 | 2010 | CP | C090 | EPIW | 820_AB |  |  |  |  |  |  |  |
| 8200CPC1160 |  | Pre-drilling (2 Rigs) |  | 63d | 2014-02-19 A | 2014-05-10 A | 8200CPC1150 | 100% | 2014-02-11 | 2014-04-30 | Cal 1 | Drilling Rig [1008 h]; Other Skill Labour (Civil) [1008 h]; Plant Operator [1008 h] | Ch139+951 | CIp | Cp | 2 | CC C | CROSS PASS | CP97 | A | S | 820 | C | 12.1 | 2010 | CP | C090 | EPIW | 820_AB |  |  |  |  |  |  |  |
| 8200CPC1170 |  | Trial pit for re-location of air release hole P2 |  | 1d | 2014-05-12 A | 2014-05-12 A | 8200CPC1160 | 100% |  |  | Cal 1 | Other Skill Labour (Civil) [16 h] | Ch139+951 | CIp | Cp | 2 | CC C | CROSS PASS | CP97 | A | S | 820 | C | 12.1 | 2010 | CP | C090 | EPIW | 820_AB |  |  |  |  |  |  |  |
| 8200CPC1180 |  | Pre-drilling for air release hole P2 |  | 2d | 2014-05-13 A | 2014-05-14 A | 8200CPC1170 | 100% |  |  | Cal 1 | Drilling Rig [32 h]; Other Skill Labour (Civil) [32 h]; Plant Operator [32 h] | Ch139+951 | CIp | Cp | 2 | CC C | CROSS PASS | CP97 | A | S | 820 | C | 12.1 | 2010 | CP | C090 | EPIW | 820_AB |  |  |  |  |  |  |  |
| 8200CPC1190 |  | Demobilization of Pre-drilling plant |  | 2d | 2014-05-15 A | 2014-05-16 A | 8200CPC1180 | 100% |  |  | Cal 1 | Drilling Rig [32 h]; Other Skill Labour (Civil) [32 h] | Ch139+951 | CIp | Cp | 2 | CC C | CROSS PASS | CP97 | A | S | 820 | C | 12.1 | 2010 | CP | C090 | EPIW | 820_AB |  |  |  |  |  |  |  |
| 8200CPC1200 |  | Mobilization and Set up of Jet grouting plant |  | 6d | 2014-05-17 A | 2014-05-19 A | 8200CPC1160 | 100% | 2014-05-17 | 2014-05-24 | Cal 1 | Other Skill Labour (Civil) [96 h] | Ch139+951 | CIp | Cp | 2 | CC C | CROSS PASS | CP97 | A | S | 820 | C | 12.1 | 2010 | CP | C090 | EPIW | 820_AB |  |  |  |  |  |  |  |
| 8200CPC1210 |  | Jet grouting (56 columns) |  | 38d | 2014-05-20 A | 2014-06-23 A | 8200CPC1190, 8200CPC1200 | 100% | 2014-05-21 | 2014-07-08 | Cal 1 | Other Skill Labour (Civil) [1216 h] | Ch139+951 | CIp | Cp | 2 | CC C | CROSS PASS | CP97 | A | S | 820 | C | 12.1 | 2010 | CP | C090 | EPIW | 820_AB |  |  |  |  |  |  |  |
| 8200CPC1220 |  | Demobilization of Jet grout plant |  | 6d | 2014-06-24 A | 2014-06-30 A | 8200CPC1210 | 100% |  |  | Cal 1 | Other Skill Labour (Civil) [96 h] | Ch139+951 | CIp | Cp | 2 | CC C | CROSS PASS | CP97 | A | S | 820 | C | 12.1 | 2010 | CP | C090 | EPIW | 820_AB |  |  |  |  |  |  |  |
| 8200CPC1230 |  | Mobilization and drilling rig for Proof Coring |  | 2d | 2014-07-02 A | 2014-07-03 A | 8200CPC1220 FS+16d | 100% | 2014-07-31 | 2014-08-01 | Cal 1 | Other Skill Labour (Civil) [16 h]; Drilling Rig [16 h]; Plant Operator [16 h] | Ch139+951 | CIp | Cp | 2 | CC C | CROSS PASS | CP97 | A | S | 820 | C | 12.1 | 2010 | CP | C090 | EPIW | 820_AB |  |  |  |  |  |  |  |
| 8200CPC1240 |  | Proof Coring |  | 6d | 2014-07-07 A | 2014-07-28 A | 8200CPC1230 | 100% | 2014-07-07 | 2014-07-14 | Cal 1 | Other Skill Labour (Civil) [48 h]; Drilling Rig [48 h]; Plant Operator [48 h] | Ch139+951 | CIp | Cp | 2 | CC C | CROSS PASS | CP97 | A | S | 820 | C | 12.1 | 2010 | CP | C090 | EPIW | 820_AB |  |  |  |  |  |  |  |
| 8200CPC1250 |  | Demobilization of drilling rig |  | 2d | 2014-07-28 A | 2014-07-29 A | 8200CPC1240 | 100% |  |  | Cal 1 | Other Skill Labour (Civil) [32 h] | Ch139+951 | CIp | Cp | 2 | CC C | CROSS PASS | CP97 | A | S | 820 | C | 12.1 | 2010 | CP | C090 | EPIW | 820_AB |  |  |  |  |  |  |  |
|  | 180 | **CP98** |  |  | 2010-10-15 | 2014-12-17 |  |  |  |  |  |  |  |  |  |  |  |  |  |  |  |  |  |  |  |  |  |  |  |  |  |  |  |  |  |  |
| 8200CPC925 |  | GI works for CP98 |  | 9d | 2010-10-15 A | 2010-10-27 A | 8200KD1020 FS+200d | 100% | 2011-02-01 | 2011-02-14 | Cal 1 | Drilling Rig [7 h]; Plant Operator [56 h] |  | DCl | CP | 1 | CC C | CROSS PASS | CP98 |  | S |  | C |  |  |  |  |  | 820_AB | 2010-10-27 | 2010-10-15 |  |  |  |  |  |
| 8200CPC930 |  | Access Works Area 12.1 for Cross Passages CP98 | milestone | 0d | 2011-08-05 A | 2011-08-05 A | 8200KD1020 FS+570d, 8200TMC370, 8200AC1410 | 100% | 2012-01-15 | 2012-01-15 |  |  |  | HCh |  |  | CC C | CROSS PASS | CP98 | A |  | 820 | C | 12.1 | 2010 | CP | C090 | EPIW | 820_AB |  |  |  |  |  |  |  |
| 8200CPC932 |  | TTA Implementation & Site Setup |  | 45d | 2011-12-19 A | 2012-03-24 A | 8200TBC420 SS, 8200CPC930 FS+75d | 100% | 2012-01-16 | 2012-03-10 | Cal 1 | Plant Operator [192 h]; Backhoe [24 h] |  | HCh |  |  | CC C | CROSS PASS | CP98 | A |  | 820 | C | 12.1 | 2010 | CP | C090 | EPIW | 820_AB |  |  |  |  |  |  |  |
| 8200CPC933 |  | Install Sleeve Pipe |  | 24d | 2012-03-26 A | 2012-03-31 A | 8200CPC925, 8200CPC930, 8200CPC932, 8200CPC925 FF | 100% | 2012-10-03 | 2012-10-31 | Cal 1 | Drilling Rig [48 h]; Plant Operator [744 h] | Ch140+201 | CIp | CP | 2 | CC C | CROSS PASS | CP98 | A | S | 820 | C | 12.1 | 2010 | CP | C090 | EPIW | 820_AB | 2012-05-31 | 2012-02-01 | 2012-02-01 | 2012-05-31 | c98 | S | 33 |
| 8200CPC934 |  | CP98 Jet Grouting from Surface |  | 96d | 2012-04-14 A | 2012-08-31 A | 8200CPC925, 8200TBC425, 8200CPC925 FF, 8200CPC930, 8200CPC932, 8200CPC933 | 100% | 2012-11-01 | 2013-02-27 | Cal 1 | Drilling Rig [48 h]; Plant Operator [744 h] | Ch140+201 | CIp | CP | 2 | CC C | CROSS PASS | CP98 | A | S | 820 | C | 12.1 | 2010 | CP | C090 | EPIW | 820_AB | 2012-05-31 | 2012-02-01 | 2012-02-01 | 2012-05-31 | c98 | S | 33 |
| 8200CPC936 |  | Road Reinstatement |  | 32d | 2012-12-17 A | 2013-02-05 A | 8200CPC933, 8200CPC934 | 100% | 2012-12-17 | 2013-01-25 | Cal 1 | Plant Operator [192 h]; Roller [24] |  | CIp |  |  | CC C | CROSS PASS | CP98 | A |  | 820 | C | 12.1 | 2010 | CP | C090 | EPIW | 820_AB |  |  |  |  |  |  |  |
| 8200CPC1060 |  | Probing/Drainage (DT) |  | 6d | 2013-10-30 A | 2013-11-01 A | 8200CPC936 | 100% | 2013-05-11 | 2013-05-18 | Cal9(S)Pt25 | Drilling Rig [3 h]; Other Skill Labour (Civil) [144 h] | 139+729>>139+929 | DJa |  |  | CC C | CROSS PASS | CP96 | A |  | 820 | C | 11.21 | 2010 | CP | C090 | EPIW | 820_AB |  |  |  |  |  |  |  |
| 8200CPC1070 |  | Segment Dismantle (DT) |  | 6d | 2013-11-02 A | 2013-11-04 A | 8200CPC1060 | 100% | 2013-05-14 | 2013-05-22 | Cal9(S)Pt25 | Other Skill Labour (Civil) [192 h] |  | DJa |  |  | CC C | CROSS PASS | CP96 | A |  | 820 | C | 11.21 | 2010 | CP | C090 | EPIW | 820_AB |  |  |  |  |  |  |  |
| 8200CPC1080 |  | Cross Passage Excavation & Temp.Support (DT) |  | 6d | 2013-11-05 A | 2013-11-07 A | 8200CPC1070 | 100% | 2013-05-21 | 2013-05-27 | Cal9(S)Pt25 | TBM Excavation [29 m3]; Other Skill Labour (Civil) [192 h]; Drilling Jumbo [4 h]; Plant Operator [32 h] | 2m | DJa |  |  | CC C | CROSS PASS | CP96 | A |  | 820 | C | 12.1 | 2010 | CP | C090 | EPIW | 820_AB |  |  |  |  |  |  |  |
| 8200CPC1090 |  | Waterproofing (DT) |  | 7d | 2013-11-11 A | 2013-11-12 A | 8200CPC1080 | 100% | 2013-09-24 | 2013-10-02 | Cal9(S)Pt25 | Other Skill Labour (Civil) [288 h] |  | DJa |  |  | CC C | CROSS PASS | CP96 | A |  | 820 | C | 12.1 | 2010 | CP | C090 | EPIW | 820_AB |  |  |  |  |  |  |  |
| 8200CPC1100 |  | Permanent Slab (DT) |  | 5d | 2013-11-13 A | 2013-11-13 A | 8200CPC1120, 8200CPC1110 | 100% | 2013-09-26 | 2013-10-02 | Cal9(S)Pt25 | Other Skill Labour (Civil) [288 h] |  | DJa |  |  | CC C | CROSS PASS | CP96 | A |  | 820 | C | 12.1 | 2010 | CP | C090 | EPIW | 820_AB |  |  |  |  |  |  |  |
| 8200CPC1110 |  | Permanent Beam (DT) |  | 8d | 2013-11-14 A | 2013-11-16 A | 8200CPC1090 | 100% | 2013-09-27 | 2013-10-07 | Cal9(S)Pt25 | Other Skill Labour (Civil) [144 h]; Steel Fixer [144 h]; Concretor [144 h]; Carpenter [144 h] |  | DJa |  |  | CC C | CROSS PASS | CP96 | A |  | 820 | C | 12.1 | 2010 | CP | C090 | EPIW | 820_AB |  |  |  |  |  |  |  |
| 8200CPC1120 |  | Permanent Lining (DT) |  | 5d | 2013-11-14 A | 2013-11-16 A | 8200CPC1090 FS+3d, 8200CPC1110 | 100% | 2013-09-27 | 2013-10-03 | Cal9(S)Pt25 | Other Skill Labour (Civil) [96 h]; Steel Fixer [96 h]; Concretor [96 h]; Carpenter [96 h] |  | DJa |  |  | CC C | CROSS PASS | CP96 | A |  | 820 | C | 12.1 | 2010 | CP | C090 | EPIW | 820_AB |  |  |  |  |  |  |  |
| 8200CPC945 |  | Probing/Drainage (UT) (after TBM removal) |  | 3d | 2014-11-20 A | 2014-11-22 A | 8200CPC915 SS+12d, 8200CPC1100, 8200TBC960z FS+20d, 8200CPC934 | 100% |  |  | Cal9(S)Pt25 | Other Skill Labour (Civil) [48 h] |  | DJa |  |  | CC C | CROSS PASS | CP98 | A |  | 820 | C | 11.21 | 2010 | CP | C090 | EPIW | 820_AB |  |  |  |  |  |  |  |
| 8200CPC950 |  | Segment Dismantle (UT) |  | 3d | 2014-11-22 A | 2014-11-29 A | 8200CPC945 | 100% | 2014-11-22 | 2014-11-25 | Cal9(S)Pt25 | Other Skill Labour (Civil) [48 h] |  | DJa |  |  | CC C | CROSS PASS | CP98 | A |  | 820 | C | 11.21 | 2010 | CP | C090 | EPIW | 820_AB |  |  |  |  |  |  |  |
| 8200CPC965 |  | Segment Dismantle (DT) |  | 3d | 2014-11-22 A | 2014-11-29 A | 8200CPC960 | 100% | 2014-11-22 | 2014-11-25 | Cal9(S)Pt25 | Other Skill Labour (Civil) [48 h] |  | DJa |  |  | CC C | CROSS PASS | CP98 | A |  | 820 | C | 11.21 | 2010 | CP | C090 | EPIW | 820_AB |  |  |  |  |  |  |  |
| 8200CPC960 |  | Cross Passage Excavation & Temp.Support (from UT) |  | 5d | 2014-11-29 A | 2014-12-01 A | 8200TBC961 FS-25d, 8200CPC950 | 100% | 2014-11-29 | 2014-12-04 | Cal9(S)Pt25 | Plant Operator [32 h]; Other Skill Labour (Civil) [128 h]; TBM Excavation [18.3 m3]; Backhoe [40 h] | 1.26m | DJa |  |  | CC C | CROSS PASS | CP98 | A |  | 820 | C | 12.1 | 2010 | CP | C090 | EPIW | 820_AB |  |  |  |  |  |  |  |
| 8200CPC970 |  | Waterproofing |  | 3d | 2014-12-02 A | 2014-12-06 A | 8200CPC960, 8200CPC965 | 100% | 2014-12-02 | 2014-12-04 | Cal9(S)Pt25 | Other Skill Labour (Civil) [96 h] |  | DJa |  |  | CC C | CROSS PASS | CP98 | A |  | 820 | C | 12.1 | 2010 | CP | C090 | EPIW | 820_AB |  |  |  |  |  |  |  |
| 8200CPC980c |  | Permanent Slab |  | 3d | 2014-12-10 A | 2014-12-10 A | 8200y0530 FF, 8200CPC980b | 100% | 2014-12-10 | 2014-12-12 | Cal9(S)Pt25 | Other Skill Labour (Civil) [96 h] |  | DJa |  |  | CC C | CROSS PASS | CP98 | A |  | 820 | C | 12.1 | 2010 | CP | C090 | EPIW | 820_AB |  |  |  |  |  |  |  |
| 8200CPC980 |  | Permanent Beam |  | 3d | 2014-12-15 A | 2014-12-15 A | 8200CPC970 | 100% | 2014-12-15 | 2014-12-17 | Cal9(S)Pt25 | Other Skill Labour (Civil) [96 h] |  | DJa |  |  | CC C | CROSS PASS | CP98 | A |  | 820 | C | 12.1 | 2010 | CP | C090 | EPIW | 820_AB |  |  |  |  |  |  |  |
| 8200CPC980b |  | Permanent Lining |  | 3d | 2014-12-17 A | 2014-12-17 A | 8200CPC980 | 100% | 2014-12-17 | 2014-12-19 | Cal9(S)Pt25 | Other Skill Labour (Civil) [96 h] |  | DJa |  |  | CC C | CROSS PASS | CP98 | A |  | 820 | C | 12.1 | 2010 | CP | C090 | EPIW | 820_AB |  |  |  |  |  |  |  |

Notes:
- 8200CPC1080: Basis & Assumptions: 6.64m
- 8200CPC960: Basis & Assumptions: 2.7m / as requested by Kenneth to meet the latest date of 16Feb14, 6d change to / 4d.

| ID | WBS | Activity | Type | Duration | Start | Finish | Predecessors | Complete | Planned start | Planned finish | Constraint | Calendar | Resources | Responsible by | LEVEL 1 | LEVEL 2 | LEVEL 3 | SUMMARY | Contracts | Cost Centre | Phases of Works | 820_As-built | Priority A | Sum1 | Order | Production Rate | QUANTITY |
| --- | --- | --- | --- | --- | --- | --- | --- | --- | --- | --- | --- | --- | --- | --- | --- | --- | --- | --- | --- | --- | --- | --- | --- | --- | --- | --- | --- |
|  | 90 | **Tunnel Lining Design/Submission/Approval** |  |  | 2010-05-12 | 2010-12-01 |  |  |  |  |  |  |  |  |  |  |  |  |  |  |  |  |  |  |  |  |  |
|  | 10 | **Design** |  |  | 2010-05-12 | 2010-12-01 |  |  |  |  |  |  |  |  |  |  |  |  |  |  |  |  |  |  |  |  |  |
| 8200DSC310 |  | AIP Submission Preparation - Tunnel Lining |  | 19d | 2010-05-12 A | 2010-06-04 A | 8200KD1020 | 100% | 2011-01-31 | 2011-02-21 |  | Cal 3 |  | KKw | CC C | TUNLIND | DESIGN | A | 820 | C | C010 | 820_AB |  |  |  |  |  |
| 8200DSC315 |  | AIP Submission to MTR | milestone | 0d | 2010-06-04 A | 2010-06-04 A | 8200DSC310 FF | 100% | 2011-02-21 | 2011-02-21 |  | Cal 3 |  | KKw | CC C | TUNLIND | DESIGN | A | 820 | C | C010 | 820_AB |  |  |  |  |  |
| 8200DSC320 |  | AIP Comment by MTR |  | 13d | 2010-06-05 A | 2010-06-18 A | 8200DSC315 | 100% | 2011-02-22 | 2011-03-06 |  |  |  | KKw | CC C | TUNLIND | DESIGN | A | 820 | C | C010 | 820_AB |  |  |  |  |  |
| 8200DSC325 |  | AIP ReSubmission Preparation - Tunnel Lining |  | 11d | 2010-06-18 A | 2010-07-02 A | 8200DSC320 | 100% | 2011-03-19 | 2011-03-31 |  | Cal 3 |  | KKw | CC C | TUNLIND | DESIGN | A | 820 | C | C010 | 820_AB |  |  |  |  |  |
| 8200DSC365 |  | DD Approval by MTR (RDO/GEO consultation) |  | 163d | 2010-06-21 A | 2010-12-01 A | 8200DSC360 | 100% | 2011-06-21 | 2011-11-30 |  |  |  | KKw | CC C | TUNLIND | DESIGN | A | 820 | C | C010 | 820_AB |  |  |  |  |  |
| 8200DSC330 |  | AIP ReSubmission to MTR | milestone | 0d | 2010-07-02 A | 2010-07-02 A | 8200DSC325 FF | 100% | 2011-04-04 | 2011-04-04 |  | Cal 3 |  | KKw | CC C | TUNLIND | DESIGN | A | 820 | C | C010 | 820_AB |  |  |  |  |  |
| 8200DSC335 |  | AIP Approval by MTR |  | 25d | 2010-07-03 A | 2010-07-28 A | 8200DSC330 | 100% | 2011-04-05 | 2011-04-29 |  |  |  | KKw | CC C | TUNLIND | DESIGN | A | 820 | C | C010 | 820_AB |  |  |  |  |  |
| 8200DSC340 |  | DD Submission Preparation - Tunnel Lining |  | 33d | 2010-07-22 A | 2010-08-30 A | 8200DSC335 | 100% | 2011-04-26 | 2011-06-04 |  | Cal 3 |  | KKw | CC C | TUNLIND | DESIGN | A | 820 | C | C010 | 820_AB |  |  |  |  |  |
| 8200DSC350 |  | DD Comment by MTR (RDO/GEO consultation) |  | 26d | 2010-08-30 A | 2010-09-25 A | 8200DSC345 | 100% | 2011-05-21 | 2011-06-15 |  |  |  | KKw | CC C | TUNLIND | DESIGN | A | 820 | C | C010 | 820_AB |  |  |  |  |  |
| 8200DSC345 |  | DD Submission to MTR (RDO/GEO consultation) | milestone | 0d | 2010-08-30 A | 2010-08-30 A | 8200DSC340 FF | 100% | 2011-05-20 | 2011-05-20 |  | Cal 3 |  | KKw | CC C | TUNLIND | DESIGN | A | 820 | C | C010 | 820_AB |  |  |  |  |  |
| 8200DSC355 |  | DD ReSubmission Preparation - Tunnel Lining |  | 12d | 2010-09-14 A | 2010-09-28 A | 8200DSC350 FF+3d | 100% | 2011-06-07 | 2011-06-20 |  | Cal 3 |  | KKw | CC C | TUNLIND | DESIGN | A | 820 | C | C010 | 820_AB |  |  |  |  |  |
| 8200DSC360 |  | DD ReSubmission to MTR (RDO/GEO consultation) | milestone | 0d | 2010-09-28 A | 2010-09-28 A | 8200DSC355 FF | 100% | 2011-06-20 | 2011-06-20 |  | Cal 3 |  | KKw | CC C | TUNLIND | DESIGN | A | 820 | C | C010 | 820_AB |  |  |  |  |  |
|  | 100 | **Tunnel Segment Fabrication** |  |  | 2010-12-13 | 2013-11-24 |  |  |  |  |  |  |  |  |  |  |  |  |  |  |  |  |  |  |  |  |  |
| 8200y0540 |  | Segment mould & Tunnel Segment Fabrication | level of effort | 773d | 2010-12-15 A | 2013-11-24 A | 8200TSC110 SS | 100% | 2011-05-18 | 2013-06-28 |  |  |  |  |  |  |  |  |  |  |  | 820_AB | 4 | S1 | 1 |  |  |
|  | 10 | **Fabrication** |  |  | 2010-12-13 | 2013-11-24 |  |  |  |  |  |  |  |  |  |  |  |  |  |  |  |  |  |  |  |  |  |
| 8200TSC100 |  | Placing Order of Segment Moulds | milestone | 0d | 2010-12-13 A | 2010-12-13 A | 8200TBC427, 8200DSC365, 8200DSC170 | 100% | 2011-07-19 | 2011-07-19 | start on 2010-12-15 |  |  | CKP | CC C | SEG MOU | FABRIC | A | 820 | C | C030 | 820_AB |  |  |  |  |  |
| 8200TSC110 |  | Segment Mould Fabrication |  | 199d | 2010-12-15 A | 2011-08-09 A | 8200TSC100 | 100% | 2011-07-19 | 2012-03-22 |  | Cal 1 |  | CKP | CC C | SEG MOU | FABRIC | A | 820 | C | C030 | 820_AB |  |  |  |  |  |
| 8200sum300 |  | Segment mould & Tunnel Segment Fabrication | level of effort | 773d | 2010-12-15 A | 2013-11-24 A | 8200TSC110 SS | 100% | 2011-05-18 | 2014-03-01 |  | Cal9(N)b |  |  |  |  |  |  |  |  |  | 820_AB | 4 | S1 |  |  |  |
| 8200TSC120 |  | Fabrication of Precast Segments - 1st batch |  | 116d | 2011-04-11 A | 2011-08-31 A | 8200TSC110 | 100% | 2011-08-10 | 2011-12-28 |  | Cal 3 | Precast Segment [284] | CKP | CC C | SEG MOU | FABRIC |  |  | C |  | 820_AB |  |  |  | 24+104+156 (learning curve) | 284 |
| 8200TSC130 |  | Fabrication of Precast Segments - 2nd batch |  | 205d | 2011-08-31 A | 2012-05-13 A | 8200TSC120 | 100% | 2012-01-16 | 2012-09-22 |  | Cal 3 | Precast Segment [911] | CKP | CC C | SEG MOU | FABRIC |  |  | C |  | 820_AB |  |  |  | 30%(XRL820) |  |
| 8200TSC135 |  | 30% Precast Segments (Mil.C5) | milestone | 0d | 2012-05-13 A | 2012-05-13 A | 8200TSC130 | 100% | 2012-12-20 | 2012-12-20 | finish on or after 2012-05-13 |  |  | CKP | CC C | SEG MOU | FABRIC |  |  | C |  | 820_AB |  |  |  |  |  |
| 8200TSC140 |  | Fabrication of Precast Segments - 3rd batch |  | 93d | 2012-05-14 A | 2012-09-02 A | 8200TSC130, 8200TSC135 | 100% | 2012-12-21 | 2013-04-19 |  | Cal 3 | Precast Segment [597] | CKP | CC C | SEG MOU | FABRIC |  |  | C |  | 820_AB |  |  |  |  |  |
| 8200TSC145 |  | 45% Precast Segments (Mil.C6) | milestone | 0d | 2012-09-02 A | 2012-09-02 A | 8200TSC140 | 100% | 2013-04-19 | 2013-04-19 | finish on or after 2012-09-02 |  |  | CKP | CC C | SEG MOU | FABRIC |  |  | C |  | 820_AB |  |  |  |  |  |
| 8200TSC150 |  | Fabrication of Precast Segments (Remaining) |  | 348d | 2012-09-03 A | 2013-11-24 A | 8200TSC145, 8200y0540 FF, 8200sum300 FF, 8200TSC140 | 100% | 2013-04-20 | 2014-06-24 |  | Cal 3 | Precast Segment [2923] | CKP | CC C | SEG MOU | FABRIC |  |  | C |  | 820_AB |  |  |  |  |  |

Notes:
- 8200TSC110: Basis & Assumptions: 2924Rings,7.5R/d

| ID | WBS | Activity | Type | Duration | Start | Finish | Predecessors | Complete | Planned start | Planned finish | Constraint | Calendar | LEVEL 1 | LEVEL 2 | LEVEL 3 | Cost Centre | 820_As-built | SUMMARY | Contracts | Responsible by | Phases of Works |
| --- | --- | --- | --- | --- | --- | --- | --- | --- | --- | --- | --- | --- | --- | --- | --- | --- | --- | --- | --- | --- | --- |
|  | 110 | **Tunnelling Works** |  |  |  |  |  |  |  |  |  |  |  |  |  |  |  |  |  |  |  |
|  | 120 | **Submission** |  |  | 2015-02-02 | 2015-04-30 |  |  |  |  |  |  |  |  |  |  |  |  |  |  |  |
|  | 10 | **Completion** |  |  | 2015-02-02 | 2015-04-30 |  |  |  |  |  |  |  |  |  |  |  |  |  |  |  |
| 8200IFC200 |  | Prepare & Submit Draft As-built Drawings |  | 45d | 2015-02-02 A | 2015-03-13 A | 8200TBC710, 8200TBC720, 8200TBC986, 8200CPC926a | 100% | 2015-02-02 | 2015-03-28 |  | Cal 3 | CC C | Submn-1 | O&M AsB | C | 820_AB |  |  |  |  |
| 8200IFC210 |  | Prepare & Submit As-built Drawings |  | 48d | 2015-03-02 A | 2015-04-30 A | 8200IFC200 | 100% |  |  |  | Cal 3 | CC C | Submn-1 | O&M AsB | C | 820_AB |  |  |  |  |
|  | CD | **Cost Centre D - Nam Cheong Building Cut & Cover Tunnel** |  |  | 2010-06-10 | 2015-05-10 |  |  |  |  |  |  |  |  |  |  |  |  |  |  |  |
|  | 10 | **IPS Milestones** |  |  | 2013-03-31 | 2015-05-10 |  |  |  |  |  |  |  |  |  |  |  |  |  |  |  |
|  | 10 | **General** |  |  | 2013-03-31 | 2015-05-10 |  |  |  |  |  |  |  |  |  |  |  |  |  |  |  |
| 8200MSD01 |  | Complete D/T Cut & Cover Tunnel - Track Slab | milestone | 0d | 2013-03-31 A | 2013-03-31 A |  | 100% |  |  | finish on or after 2013-03-31 |  | CC D | MILESTO | o | D |  | A | 820 |  |  |
| 8200MSD02 |  | Deg. 1 Completion for D/T Tunnel | milestone | 0d | 2014-06-15 A | 2014-06-15 A | 8200CCD650 | 100% |  |  | finish on 2014-06-15 |  | CC D | MILESTO | o | D |  | A | 820 |  |  |
| 8200MSD03 |  | Complete 40% U/T Cut & Cover Tunnel Structure | milestone | 0d | 2014-06-15 A | 2014-06-15 A |  | 100% |  |  | finish on 2014-08-10 |  | CC D | MILESTO | o | D |  | A | 820 |  |  |
| 8200MSD04 |  | Deg. 1 Completion for U/T Tunnel | milestone | 0d | 2015-03-13 A | 2015-03-13 A | 8200CCD700 | 100% |  |  | finish on 2015-02-22 |  | CC D | MILESTO | o | D |  | A | 820 |  |  |
| 8200MSD05 |  | Closure of Access Opening in Tunnel Roof | milestone | 0d | 2015-03-30 A | 2015-03-30 A | 8200CCD700, 8200CCD800, 8200CCD600 | 100% |  |  | finish on 2015-04-19 |  | CC D | MILESTO | o | D |  | A | 820 |  |  |
| 8200MSD06 |  | Complete All Works | milestone | 0d | 2015-05-10 A | 2015-05-10 A |  | 100% |  |  | finish on 2015-05-10 |  | CC D | MILESTO | o | D |  | A | 820 |  |  |
|  | 20 | **Design Preparation/Submission/Approval** |  |  | 2010-06-10 | 2012-03-31 |  |  |  |  |  |  |  |  |  |  |  |  |  |  |  |
|  | 10 | **Design** |  |  | 2010-06-10 | 2012-03-31 |  |  |  |  |  |  |  |  |  |  |  |  |  |  |  |
| 8200DSD270 |  | Prepare AIP Submission for Cut & Cover Tunnels |  | 93d | 2010-06-10 A | 2010-09-29 A | 8200KD1020 FS+60d | 100% | 2011-01-31 | 2011-05-25 |  | Cal 3 | CC D | DESIGN | DESIGN | D | 820_AB | A | 820 | KKw | C010 |
| 8200DSD285 |  | AIP Comment & Approval for Cut & Cover Tunnels by MTR |  | 31d | 2010-07-20 A | 2010-08-19 A | 8200DSD280 | 100% | 2011-03-06 | 2011-04-05 |  |  | CC D | DESIGN | DESIGN | D | 820_AB |  |  | KKw |  |
| 8200DSD280 |  | Submit AIP Submission for Cut & Cover Tunnels | milestone | 0d | 2010-07-20 A | 2010-07-20 A | 8200DSD270 FF | 100% | 2011-03-05 | 2011-03-05 |  | Cal 3 | CC D | DESIGN | DESIGN | D | 820_AB | A | 820 | KKw | C010 |
| 8200DSD290 |  | Prepare 1st DDA for Cut & Cover Tunnels |  | 103d | 2011-05-16 A | 2011-06-20 A | 8200DSD285 FF+6d, 8200DSD270, 8200DSD270 SS+6d | 100% | 2011-03-07 | 2011-07-13 |  | Cal 3 | CC D | DESIGN | DESIGN | D | 820_AB | A | 820 | KKw | C010 |
| 8200DSD300 |  | Submit 1st DDA for Cut & Cover Tunnels | milestone | 0d | 2011-06-20 A | 2011-06-20 A | 8200DSD290 | 100% | 2011-04-11 | 2011-04-11 |  | Cal 3 | CC D | DESIGN | DESIGN | D | 820_AB | A | 820 | KKw | C010 |
| 8200DSD310 |  | 1st DDA Comment & Approval by MTR (RDO/GEO consultation) |  | 69d | 2011-06-21 A | 2011-08-29 A | 8200DSD300 | 100% | 2011-04-12 | 2011-06-19 |  |  | CC D | DESIGN | DESIGN | D | 820_AB | A | 820 | KKw | C010 |
| 8200DSD320 |  | Prepare 2nd DDA for Cut & Cover Tunnels |  | 29d | 2011-08-30 A | 2011-10-21 A | 8200DSD290, 8200DSD310 FF+6d | 100% | 2012-01-16 | 2012-02-21 |  | Cal 3 | CC D | DESIGN | DESIGN | D | 820_AB | A | 820 | KKw | C010 |
| 8200DSD330 |  | Submit 2nd DDA for Cut & Cover Tunnels | milestone | 0d | 2011-10-21 A | 2011-10-21 A | 8200DSD320 | 100% | 2012-01-16 | 2012-01-16 |  | Cal 3 | CC D | DESIGN | DESIGN | D | 820_AB | A | 820 | KKw | C010 |
| 8200DSD340 |  | 2nd DDA for Cut & Cover Tunnels Comment & Approval by MTR |  | 28d | 2012-01-15 A | 2012-03-31 A | 8200DSD330 | 100% | 2012-08-31 | 2012-09-27 |  |  | CC D | DESIGN | DESIGN | D | 820_AB | A | 820 | KKw | C010 |

| ID | WBS | Activity | Type | Duration | Start | Finish | Predecessors | Complete | Planned start | Planned finish | Calendar | Resources | Responsible by | LEVEL 1 | LEVEL 2 | LEVEL 3 | SUMMARY | Responsible (bm makes Global) | Contracts | Cost Centre | 820_As-built | Works Area | Location of Works | Sub-locationof Works | Phases of Works | Classification of Works |
| --- | --- | --- | --- | --- | --- | --- | --- | --- | --- | --- | --- | --- | --- | --- | --- | --- | --- | --- | --- | --- | --- | --- | --- | --- | --- | --- |
|  | 30 | **Method Statement Submission and Approval** |  |  | 2011-08-08 | 2012-03-31 |  |  |  |  |  |  |  |  |  |  |  |  |  |  |  |  |  |  |  |  |
|  | 10 | **Method Statement Submission and Approval** |  |  | 2011-08-08 | 2012-03-31 |  |  |  |  |  |  |  |  |  |  |  |  |  |  |  |  |  |  |  |  |
| 8200MTD100 |  | MS Submission Preparation for Cut & Cover Tunnel |  | 25d | 2011-08-08 A | 2011-09-07 A | 8200KD1020 FS+504d | 100% | 2012-01-16 | 2012-02-16 | Cal 3 |  | FSo | CC D | MS PREP | MS PREP | VB & CC | ARo | 820 | D | 820_AB |  |  |  |  |  |
| 8200MTD105 |  | MS Submission to MTR | milestone | 0d | 2011-09-15 A | 2011-09-15 A | 8200MTD100 FF | 100% | 2012-01-16 | 2012-01-16 | Cal 3 |  | FSo | CC D | MS PREP | MS PREP | VB & CC | ARo | 820 | D | 820_AB |  |  |  |  |  |
| 8200MTD110 |  | MS Comment by MTR |  | 28d | 2011-09-16 A | 2011-09-27 A | 8200MTD105 | 100% | 2012-01-15 | 2012-02-11 |  |  | FSo | CC D | MS PREP | MS PREP | VB & CC | ARo | 820 | D | 820_AB |  |  |  |  |  |
| 8200MTD115 |  | MS Re-submission Preparation |  | 24d | 2011-09-28 A | 2012-02-15 A | 8200MTD110 FF, 8200MTD110 | 100% | 2012-01-16 | 2012-02-15 | Cal 3 |  | FSo | CC D | MS PREP | MS PREP | VB & CC | ARo | 820 | D | 820_AB |  |  |  |  |  |
| 8200MTD120 |  | MS Comment & Approval by MTR |  | 28d | 2012-02-16 A | 2012-03-14 A | 8200MTD115 FF, 8200MTD115, 8200MTD115 SS, 8200KD1020 | 100% | 2012-09-28 | 2012-10-25 |  |  | FSo | CC D | MS PREP | MS PREP | VB & CC | ARo | 820 | D | 820_AB |  |  |  |  |  |
| 8200MTD125 |  | Issue for Construction | milestone | 0d | 2012-03-31 A | 2012-03-31 A | 8200MTD110 FS+1d, 8200MTD120 | 100% | 2012-10-25 | 2012-10-25 | Cal 3 |  | FSo | CC D | MS PREP | MS PREP | VB & CC |  | 820 | D | 820_AB |  |  |  |  |  |
|  | 40 | **Construction** |  |  | 2012-03-12 | 2015-03-30 |  |  |  |  |  |  |  |  |  |  |  |  |  |  |  |  |  |  |  |  |
|  | 1 | **Cut & Cover Tunnel - Track Level** |  |  | 2012-03-12 | 2012-10-24 |  |  |  |  |  |  |  |  |  |  |  |  |  |  |  |  |  |  |  |  |
| 8200CCD215 |  | D/T: Cut & Cover Tunnel - Wall AW1 |  | 21d | 2012-03-12 A | 2012-03-24 A | 8200MTD125 FS-11d, 8200DSD340, 8200CCE242c10 | 100% | 2012-10-12 | 2012-11-06 | Cal 1 | Steel Fixer [2304 h]; Concretor [192 h]; Carpenter [2304 h]; Mobile Crane [24 h]; Concrete [77 m3]; Rebar [34.62 Tonne] | DJa | CC D | CUT&CTU | CCVS | VB & CC |  | 820 | D | 820_AB | 11.26A | 2020 | TL | C090 | EPIW |
| 8200CCD216 |  | D/T: Cut & Cover Tunnel - Wall AW1a |  | 14d | 2012-04-23 A | 2012-05-19 A | 8200CCD219 FS-7d | 100% | 2012-11-20 | 2012-12-05 | Cal 1 | Steel Fixer [2304 h]; Concretor [192 h]; Carpenter [2304 h]; Mobile Crane [24 h]; Rebar [105 Tonne]; Concrete [70 m3] | DJa | CC D | CUT&CTU | CCVS | VB & CC |  | 820 | D | 820_AB | 11.26A | 2020 | TL | C090 | EPIW |
| 8200CCD219 |  | D/T: Cut & Cover Tunnel - Wall AD0 |  | 14d | 2012-04-30 A | 2012-05-24 A | 8200CCD215 | 100% | 2012-11-07 | 2012-11-22 | Cal 1 | Steel Fixer [2304 h]; Concretor [192 h]; Concrete [105 m3]; Carpenter [2304 h]; Mobile Crane [24 h]; Rebar [105 Tonne] | DJa | CC D | CUT&CTU | CCVS | VB & CC |  | 820 | D | 820_AB | 11.26A | 2020 | TL | C090 | EPIW |
| 8200CCD340 |  | D/T: Cut & Cover Tunnel - Wall AD1 |  | 14d | 2012-05-05 A | 2012-07-04 A |  | 100% | 2013-06-29 | 2013-07-17 | Cal 1 | Concretor [112 h]; Carpenter [1344 h]; Mobile Crane [14 h]; Concrete [80 m3]; Rebar [14.84 Tonne]; Steel Fixer [1344 h] | DJa | CC D | CUT&CTU | CCVS | VB & CC |  | 820 | D | 820_AB | 11.26A | 2020 | TL | C090 | EPIW |
| 8200CCD350 |  | D/T: Cut & Cover Tunnel - Wall AD2 |  | 14d | 2012-05-05 A | 2012-08-13 A |  | 100% | 2012-05-05 | 2012-05-23 | Cal 1 | Steel Fixer [1344 h]; Concretor [112 h]; Carpenter [1344 h]; Mobile Crane [14 h]; Rebar [11.3 Tonne]; Concrete [40 m3] | DJa | CC D | CUT&CTU | CCVS | VB & CC |  | 820 | D | 820_AB | 11.26A | 2020 | TL | C090 | EPIW |
| 8200CCD217 |  | D/T: Cut & Cover Tunnel - Wall AW2 |  | 20d | 2012-07-14 A | 2012-09-19 A | 8200CCD216 | 100% | 2012-12-06 | 2012-12-31 | Cal 1 | Steel Fixer [2304 h]; Concretor [192 h]; Mobile Crane [24 h]; Concrete [126 m3]; Rebar [29.67 Tonne]; Carpenter [2304 h] | DJa | CC D | CUT&CTU | CCVS | VB & CC |  | 820 | D | 820_AB | 11.26A | 2020 | TL | C090 | EPIW |
| 8200CCD220 |  | U/T: Cut & Cover Tunnel - Slab ATS1 |  | 21d | 2012-07-31 A | 2012-10-09 A | 8200CCD217 FS-8d | 100% | 2012-12-20 | 2013-01-16 | Cal 1 | Carpenter [2016 h]; Mobile Crane [21 h]; Rebar [45.45 Tonne]; Concrete [180 m3]; Steel Fixer [2016 h]; Concretor [168 h] | DJa | CC D | CUT&CTU | CCVS | VB & CC |  | 820 | D | 820_AB | 11.26A | 2020 | TL | C090 | EPIW |
| 8200CCD225 |  | U/T: Cut & Cover Tunnel - Slab ATS2 |  | 20d | 2012-08-16 A | 2012-10-09 A | 8200CCD220 FS-7d | 100% | 2013-01-09 | 2013-01-31 | Cal 1 | Steel Fixer [2016 h]; Concretor [168 h]; Carpenter [2016 h]; Mobile Crane [21 h]; Concrete [258 m3]; Rebar [48.51 Tonne] | DJa | CC D | CUT&CTU | CCVS | VB & CC |  | 820 | D | 820_AB | 11.26A | 2020 | TL | C090 | EPIW |
| 8200CCD226 |  | D/T: Cut & Cover Tunnel - Removal of S4 Struts 2-P1 to P3 |  | 12d | 2012-10-10 A | 2012-10-24 A | 8200CCD225 | 100% | 2012-11-12 | 2012-11-24 | Cal 1 | Mobile Crane [10 h]; Plant Operator [80 h]; Other Skill Labour (Civil) [480 h] | DJa | CC D | CUT&CTU | CCVS | VB & CC |  | 820 | D | 820_AB | 11.26A | 2020 | TL | C090 | EPIW |
|  | 3 | **Shaft Box B (Northern Portion)** |  |  | 2013-01-28 | 2014-02-13 |  |  |  |  |  |  |  |  |  |  |  |  |  |  |  |  |  |  |  |  |
|  | 1 | **G/L 1 - 5** |  |  | 2013-01-28 | 2013-06-04 |  |  |  |  |  |  |  |  |  |  |  |  |  |  |  |  |  |  |  |  |
| 8200CCD227 |  | Construction of Above Track Slab D/T |  | 58d | 2013-01-28 A | 2013-04-13 A | 8200TBC820 FS+7d, 8200TBC819b | 100% |  |  | Cal 1 | Steel Fixer [2016 h]; Carpenter [2016 h]; Other Skill Labour (Civil) [928 h]; Concretor [96 h] | DJa | CC D | CUT&CTU | CCVS |  |  |  | D | 820_AB |  | 2020 | TL |  |  |
| 8200CCD302 |  | Construction of Above Track Slab U/T (Part 1) |  | 61d | 2013-01-28 A | 2013-04-19 A | 8200CCD227 SS+1d | 100% | 2013-01-28 | 2013-04-17 | Cal 1 | Other Skill Labour (Civil) [976 h]; Steel Fixer [1952 h]; Carpenter [1952 h]; Concretor [96 h] | DJa | CC D | CUT&CTU | CCVS | VB & CC |  | 820 | D | 820_AB | 11.26A | 2020 | TL | C090 | EPIW |
| 8200CCD605 |  | Steel Bell & False Tunnel Dismantling |  | 13d | 2013-04-20 A | 2013-05-06 A | 8200CCD302 | 100% | 2014-04-22 | 2014-05-08 | Cal 1 | Mobile Crane [10 h]; Plant Operator [80 h]; Other Skill Labour (Civil) [480 h] | DJa | CC D | CUT&CTU | CCVS | VB & CC |  | 820 | D | 820_AB | 11.26A | 2020 | TL | C090 | EPIW |
| 8200CCD615 |  | Construction of Above Track Slab U/T (Part 2) |  | 27d | 2013-05-06 A | 2013-06-04 A | 8200CCD605 FS-1d | 100% | 2014-05-07 | 2014-06-11 | Cal 1 | Other Skill Labour (Civil) [480 h]; Carpenter [896 h]; Steel Fixer [896 h]; Concretor [96 h] | DJa | CC D | CUT&CTU | CCVS | VB & CC |  | 820 | D | 820_AB | 11.26A | 2020 | TL | C090 | EPIW |

| ID | WBS | Activity | Type | Duration | Start | Finish | Predecessors | Complete | Planned start | Planned finish | Total float | Free float | Constraint | Calendar | Resources | Responsible by | LEVEL 1 | LEVEL 2 | LEVEL 3 | SUMMARY | Contracts | Cost Centre | Works Area | Location of Works | Sub-locationof Works | Phases of Works | Classification of Works | 820_As-built |
| --- | --- | --- | --- | --- | --- | --- | --- | --- | --- | --- | --- | --- | --- | --- | --- | --- | --- | --- | --- | --- | --- | --- | --- | --- | --- | --- | --- | --- |
|  | 4 | **G/L 1 - 9** |  |  | 2013-12-31 | 2014-02-13 |  |  |  |  |  |  |  |  |  |  |  |  |  |  |  |  |  |  |  |  |  |  |
| 8200CCD810 |  | North U/T: Construction of C & C Tunnel (GL 1 - 9) & Deg. 1 works |  | 35d | 2013-12-31 A | 2014-02-13 A | 8200TBC690a | 100% |  |  |  |  |  | Cal 1 | Steel Fixer [224 h]; Carpenter [448 h]; Other Skill Labour (Civil) [448 h] | DJa | CC D | CUT&CTU | CCVS | VB & CC | 820 | D | 11.26A | 2020 | TL | C090 | EPIW | 820_AB |
| 8200CCD500 |  | North D/T: Construction of Walkway (Dkb137+783 to Dkb 137+850) |  | 14d | 2014-01-15 A | 2014-01-30 A | 8200CCD227 FS+24d, 8200CCD810 SS+12d | 100% |  |  |  |  |  | Cal 1 | Steel Fixer [112 h]; Carpenter [224 h]; Other Skill Labour (Civil) [224 h] | DJa | CC D | CUT&CTU | CCVS | VB & CC | 820 | D | 11.26A | 2020 | TL | C090 | EPIW | 820_AB |
|  | 5 | **South Opening at NAC (Dkb137+907 to Dkb137+941)** |  |  | 2013-12-02 | 2015-03-30 |  |  |  |  |  |  |  |  |  |  |  |  |  |  |  |  |  |  |  |  |  |  |
| 8200CCD510 |  | Area 1 - South D/T: Construction of Walkway, External wall, Internal wall, End wall & Above Track Slab (Target dates) |  | 130d | 2013-12-02 A | 2014-05-17 A | 8200TBC565 FS+40d, 8200PD4010 SS | 100% |  |  |  |  |  | Cal 1 | Other Skill Labour (Civil) [4160 h]; Carpenter [4160 h]; Steel Fixer [2240 h] | DJa | CC D | CUT&CTU | CCVS | VB & CC | 820 | D | 11.26A | 2020 | TL | C090 | EPIW | 820_AB |
| 8200CCD550 |  | Area 3 - South U/T: Construction of Walkway, External wall & Internal wall( Target dates) |  | 91d | 2014-09-01 A | 2015-02-11 A | 8200PD4040 SS, 8200TBC960 | 100% | 2014-09-01 | 2014-12-20 |  |  |  | Cal 1 | Steel Fixer [728 h]; Carpenter [1456 h]; Other Skill Labour (Civil) [1456 h] | DJa | CC D | CUT&CTU | CCVS | VB & CC | 820 | D | 11.26A | 2020 | TL | C090 | EPIW | 820_AB |
| 8200CCD600 |  | Area 3 - South U/T: Construction of Above-Track Roof Slab (Closure of Opening) (Target dates) |  | 27d | 2014-12-22 A | 2015-03-30 A | 8200CCD550, 8200WKT440 FF, 8200PD4070 SS | 100% | 2014-12-22 | 2015-01-24 |  |  |  | Cal 1 | Steel Fixer [216 h]; Carpenter [432 h]; Other Skill Labour (Civil) [432 h] | DJa | CC D | CUT&CTU | CCVS | VB & CC | 820 | D | 11.26A | 2020 | TL | C090 | EPIW | 820_AB |
|  | 4 | **NAC Shaft - Central Opening Structure (Dkb137+850 to Dkb137+885)** |  |  | 2014-05-19 | 2015-03-30 |  |  |  |  |  |  |  |  |  |  |  |  |  |  |  |  |  |  |  |  |  |  |
|  | 1 | **G/L 9 - 13 (Dkb137+850 to Dkb137+885)** |  |  | 2014-05-19 | 2015-03-30 |  |  |  |  |  |  |  |  |  |  |  |  |  |  |  |  |  |  |  |  |  |  |
| 8200CCD650 |  | Area 2 - D/T Construction of External wall & Walkways |  | 21d | 2014-05-19 A | 2014-06-14 A | 8200PD4020 SS | 100% |  |  |  |  |  | Cal 1 | Steel Fixer [168 h]; Carpenter [336 h]; Other Skill Labour (Civil) [336 h] | DJa | CC D | CUT&CTU | CCVS | VB & CC | 820 | D | 11.26A | 2020 | TL | C090 | EPIW | 820_AB |
| 8200CCD700 |  | Area 4B - Construction of Internal walls and Central portion of Above-Track Roof Slab with falsework |  | 35d | 2014-12-29 A | 2015-01-30 A | 8200PD4030 SS | 100% | 2014-12-29 | 2015-02-07 |  |  |  | Cal 1 | Steel Fixer [256 h]; Carpenter [512 h]; Other Skill Labour (Civil) [512 h] | DJa | CC D | CUT&CTU | CCVS | VB & CC | 820 | D | 11.26A | 2020 | TL | C090 | EPIW | 820_AB |
| 8200CCD750 |  | Area 4A - U/T Construction of External wall & Walkways (Target dates) |  | 23d | 2014-12-29 A | 2015-01-30 A | 8200PD4050 SS, 8200WKT440 FF | 100% | 2014-12-29 | 2015-01-24 |  |  |  | Cal 1 | Steel Fixer [184 h]; Carpenter [368 h]; Other Skill Labour (Civil) [368 h] | DJa | CC D | CUT&CTU | CCVS | VB & CC | 820 | D | 11.26A | 2020 | TL | C090 | EPIW | 820_AB |
| 8200CCD800 |  | Area 4C - Close remaining Above-Track Roof Slab & RC duct btw Dkb137+850 to 137+885 (Target dates) |  | 87d | 2014-12-29 A | 2015-03-30 A | 8200PD4060 SS, 8200WKT440 FF | 100% | 2014-12-29 | 2015-04-18 |  |  |  | Cal 1 | Steel Fixer [696 h]; Carpenter [1392 h]; Other Skill Labour (Civil) [1392 h] | DJa | CC D | CUT&CTU | CCVS | VB & CC | 820 | D | 11.26A | 2020 | TL | C090 | EPIW | 820_AB |
|  | 50 | **Cut and Cover Tunnel works** |  |  |  |  |  |  |  |  |  |  |  |  |  |  |  |  |  |  |  |  |  |  |  |  |  |  |
|  | 10 | **Access Dates for Designated Contractor** |  |  |  |  |  |  |  |  |  |  |  |  |  |  |  |  |  |  |  |  |  |  |  |  |  |  |
|  | 70 | **Submission** |  |  | 2015-03-02 | 2015-04-30 |  |  |  |  |  |  |  |  |  |  |  |  |  |  |  |  |  |  |  |  |  |  |
|  | 10 | **Completion** |  |  | 2015-03-02 | 2015-04-30 |  |  |  |  |  |  |  |  |  |  |  |  |  |  |  |  |  |  |  |  |  |  |
| 8200CCD110 |  | Prepare & Submit Draft As-built Drawings |  | 36d | 2015-03-02 A | 2015-03-20 A | 8200CCD550 | 100% | 2015-03-02 | 2015-04-16 |  |  |  | Cal 3 |  | DJa | CC D | Submn-1 | O&M AsB |  |  | D |  | 2020 | CCT |  |  | 820_AB |
| 8200CCD120 |  | Prepare & Submit As-built Drawings |  | 36d | 2015-03-02 A | 2015-04-30 A | 8200CCD110 | 100% | 2015-03-02 | 2015-04-16 |  |  |  | Cal 3 |  | DJa | CC D | Submn-1 | O&M AsB |  |  | D |  | 2020 | CCT |  |  | 820_AB |
|  | CE | **Cost Centre E - Nam Cheong Ventilation Building** |  |  | 2010-05-12 | 2015-08-24 |  |  |  |  |  |  |  |  |  |  |  |  |  |  |  |  |  |  |  |  |  |  |
|  | 10 | **IPS Milestones** |  |  | 2010-09-26 | 2015-08-24 |  |  |  |  |  |  |  |  |  |  |  |  |  |  |  |  |  |  |  |  |  |  |
|  | 10 | **General** |  |  | 2010-09-26 | 2015-08-24 |  |  |  |  |  |  |  |  |  |  |  |  |  |  |  |  |  |  |  |  |  |  |
| 8200MSE01 |  | Complete 20% of Diaphragm Wall | milestone | 0d | 2010-09-26 A | 2010-09-26 A |  | 100% | 2011-02-28 | 2011-02-28 |  |  | finish on or after 2010-09-26 |  |  | JMB | CC E | MILESTO | o | A | 820 | E |  | 2020 |  |  |  | 820_AB |
| 8200MSE02a |  | Complete 90% Diaphragm Wall | milestone | 0d | 2011-02-27 A | 2011-02-27 A | 8200CCE160a | 100% | 2011-06-19 | 2011-06-19 |  |  | finish on or after 2011-02-27 |  |  | JMB | CC E | MILESTO | o | A | 820 | E |  | 2020 |  |  |  | 820_AB |
| 8200MSE02b |  | Complete 100% Diaphragm Wall | milestone | 0d | 2011-03-27 A | 2011-03-27 A | 8200CCE260a, 8200CCE345a, 8200CCE160a | 100% | 2011-06-19 | 2011-06-19 |  |  | finish on or after 2011-03-27 |  |  | JMB | CC E | MILESTO | o | A | 820 | E |  | 2020 |  |  |  | 820_AB |
| 8200MSE03 |  | Complete 45% of Excavation | milestone | 0d | 2011-07-04 A | 2011-07-04 A | 8200CCE200b20 FS-56d, 8200CCE200b21 FS-56d, 8200CCE200b10 FS-19d | 100% | 2011-08-31 | 2011-08-31 |  |  | finish on or after 2011-05-29 |  |  | JMB | CC E | MILESTO | o | A | 820 | E |  | 2020 |  |  |  | 820_AB |
| 8200MSE04 |  | Complete Excavation | milestone | 0d | 2011-12-02 A | 2011-12-02 A | 8200CCE200b10b, 8200CCE200b10, 8200CCE200b21, 8200CCE200b20 | 100% | 2012-01-15 | 2012-01-15 |  |  | finish on or after 2011-08-28 |  |  | JMB | CC E | MILESTO | o | A | 820 | E |  | 2020 |  |  |  | 820_AB |
| 8200MSE05 |  | Complete 70% Nam Cheong Vent. Building Structure | milestone | 0d | 2013-09-14 A | 2013-09-14 A | 8200CCE554 | 100% |  |  |  |  | finish on or after 2013-09-29 |  |  | JMB | CC E | MILESTO | o | A | 820 | E |  | 2020 |  |  |  | 820_AB |
| 8200MSE06 |  | Deg.1 Completion for Nam Cheong Vent. Building (VB7), except Track level and Above Track level | milestone | 0d | 2014-05-31 A | 2014-05-31 A | 8200CCE556 FF, 8200CCE556, 8200CCE550 | 100% |  |  |  |  | finish on 2014-05-11 |  |  | JMB | CC E | MILESTO | o | A | 820 | E |  | 2020 |  |  |  | 820_AB |
| 8200MSE07 |  | All Permanent Doors Installed | milestone | 0d | 2015-03-31 A | 2015-03-31 A | 8200CCE565, 8200CCE576 | 100% |  |  |  |  | finish on 2015-04-18 |  |  | JMB | CC E | MILESTO | o | A | 820 | E |  | 2020 |  |  |  | 820_AB |
| 8200MSE08 |  | All Work Completed & Statutory Inspection Successfully Undertaken | milestone | 0d | 2015-08-24 | 2015-08-24 | 8200CCE700 |  |  |  | -107d | 260d | finish on 2015-05-09 |  |  | JMB | CC E | MILESTO | o | A | 820 | E |  | 2020 |  |  |  | 820_AB |

| ID | WBS | Activity | Type | Duration | Start | Finish | Predecessors | Complete | Planned start | Planned finish | Calendar | Responsible by | LEVEL 1 | LEVEL 2 | LEVEL 3 | SUMMARY | Contracts | Cost Centre | Location of Works | Phases of Works | 820_As-built |
| --- | --- | --- | --- | --- | --- | --- | --- | --- | --- | --- | --- | --- | --- | --- | --- | --- | --- | --- | --- | --- | --- |
|  | 20 | **Design Preparation/Submission/Approval** |  |  | 2010-05-12 | 2010-08-04 |  |  |  |  |  |  |  |  |  |  |  |  |  |  |  |
|  | 10 | **Temp.Works Design Submission** |  |  | 2010-05-12 | 2010-08-04 |  |  |  |  |  |  |  |  |  |  |  |  |  |  |  |
| 8200DSE110 |  | Temp. Wokrs Desgn for DW |  | 20d | 2010-05-12 A | 2010-06-04 A | 8200KD1020 | 100% | 2011-01-31 | 2011-02-22 | Cal 3 | KKw | CC E | DESIGN | TEMPWKD | VB & CC | 820 | E | 2020 | C010 | 820_AB |
| 8200DSE120 |  | Temp. Works Design Submit to MTR | milestone | 0d | 2010-06-04 A | 2010-06-04 A | 8200DSE110 FF | 100% | 2011-03-03 | 2011-03-03 | Cal 3 | KKw | CC E | DESIGN | TEMPWKD | VB & CC | 820 | E | 2020 | C010 | 820_AB |
| 8200DSE130 |  | Temp. Works Design Reviewed by MTR |  | 26d | 2010-06-05 A | 2010-06-30 A | 8200DSE120 | 100% | 2011-03-04 | 2011-03-29 |  | KKw | CC E | DESIGN | TEMPWKD | VB & CC | 820 | E | 2020 | C010 | 820_AB |
| 8200DSE160 |  | Issue for Construction | milestone | 0d | 2010-08-04 A | 2010-08-04 A | 8200DSE130 FS+1d | 100% | 2011-04-01 | 2011-04-01 | Cal 3 | KKw | CC E | DESIGN | TEMPWKD | VB & CC | 820 | E | 2020 | C010 | 820_AB |
|  | 30 | **Diaphragm Wall Design/submission/Approval** |  |  | 2010-05-12 | 2011-05-16 |  |  |  |  |  |  |  |  |  |  |  |  |  |  |  |
|  | 10 | **Design** |  |  | 2010-05-12 | 2011-05-16 |  |  |  |  |  |  |  |  |  |  |  |  |  |  |  |
| 8200DSD450 |  | Prepare Zone A - D-Wall General Arrangement Dwgs & Calculations Part 1 |  | 42d | 2010-05-12 A | 2010-07-02 A | 8200KD1020 | 100% | 2011-01-08 | 2011-02-25 | Cal 3 | JMB | CC E | DWALL | DESIGN | A | 820 | E | 2020 | C010 | 820_AB |
| 8200DSD540 |  | Prepare Zone B - D-Wall General Arrangement Dwgs & Calculations Part 1 |  | 63d | 2010-05-12 A | 2010-07-27 A | 8200KD1020, 8200DSD450 | 100% | 2011-01-08 | 2011-03-22 | Cal 3 | JMB | CC E | DWALL | DESIGN | A | 820 | E | 2020 | C010 | 820_AB |
| 8200DSD470 |  | Prepare Zone A - D-Wall R.C Details Dwgs.& Calculation Part 2 |  | 47d | 2010-05-19 A | 2010-07-15 A | 8200DSD450 SS+6d | 100% | 2011-01-31 | 2011-03-25 | Cal 3 | JMB | CC E | DWALL | DESIGN | A | 820 | E | 2020 | C010 | 820_AB |
| 8200DSD560 |  | Prepare Zone B - D-Wall R.C Details Dwgs.& Calculation Part 2 |  | 50d | 2010-06-03 A | 2010-08-02 A | 8200DSD470, 8200DSD540 SS+6d | 100% | 2011-03-12 | 2011-05-16 | Cal 3 | JMB | CC E | DWALL | DESIGN | A | 820 | E | 2020 | C010 | 820_AB |
| 8200DSD500 |  | Prepare Zone A - D-Wall ELS |  | 116d | 2010-07-02 A | 2010-11-17 A | 8200DSD470 | 100% | 2011-03-12 | 2011-08-03 | Cal 3 | JMB | CC E | DWALL | DESIGN | A | 820 | E | 2020 | C010 | 820_AB |
| 8200DSD460 |  | Submit Zone A - D-Wall General Arrangement to MTR (RDO/GEO consultation) | milestone | 0d | 2010-07-02 A | 2010-07-02 A | 8200DSD450 FF | 100% | 2011-01-31 | 2011-01-31 | Cal 3 | JMB | CC E | DWALL | DESIGN | A | 820 | E | 2020 | C010 | 820_AB |
| 8200DSD465 |  | Zone A- D-Wall General Arrangement Comments & Approval by MTR (RDO/GEO consultation) |  | 14d | 2010-07-03 A | 2010-07-16 A | 8200DSD460 | 100% | 2011-01-31 | 2011-02-13 |  | JMB | CC E | DWALL | DESIGN |  |  | E | 2020 |  | 820_AB |
| 8200DSD480 |  | Submit Zone A - D-Wall R.C Details to MTR | milestone | 0d | 2010-07-15 A | 2010-07-15 A | 8200DSD470 | 100% | 2011-03-11 | 2011-03-11 | Cal 3 | JMB | CC E | DWALL | DESIGN | A | 820 | E | 2020 | C010 | 820_AB |
| 8200DSD490 |  | Zone A - D-Wall R.C Details Comment & Approval by MTR |  | 18d | 2010-07-16 A | 2010-08-02 A | 8200DSD480 | 100% | 2011-03-12 | 2011-03-29 |  | JMB | CC E | DWALL | DESIGN | A | 820 | E | 2020 | C010 | 820_AB |
| 8200DSD550 |  | Submit Zone B - D-Wall General Arrangement to MTR (RDO/GEO consultation) | milestone | 0d | 2010-07-27 A | 2010-07-27 A | 8200DSD540 FF | 100% | 2011-02-09 | 2011-02-09 | Cal 3 | JMB | CC E | DWALL | DESIGN | A | 820 | E | 2020 | C010 | 820_AB |
| 8200DSD555 |  | Zone B - D-Wall General Arrangement Comments & Approval by MTR (RDO/GEO consultation) |  | 29d | 2010-07-28 A | 2010-08-25 A | 8200DSD550 | 100% | 2011-02-10 | 2011-03-10 |  | JMB | CC E | DWALL | DESIGN |  |  | E | 2020 |  | 820_AB |
| 8200DSD570 |  | Submit Zone B - D-Wall R.C Details to MTR | milestone | 0d | 2010-08-02 A | 2010-08-02 A | 8200DSD560 | 100% | 2011-04-26 | 2011-04-26 | Cal 3 | JMB | CC E | DWALL | DESIGN | A | 820 | E | 2020 | C010 | 820_AB |
| 8200DSD580 |  | Zone B - D-Wall R.C Details Comments & Approval by MTR |  | 18d | 2010-08-03 A | 2010-08-20 A | 8200DSD570 | 100% | 2011-04-27 | 2011-05-14 |  | JMB | CC E | DWALL | DESIGN | A | 820 | E | 2020 | C010 | 820_AB |
| 8200DSD590 |  | Prepare Zone B- D-Wall ELS |  | 194d | 2010-08-21 A | 2011-04-15 A | 8200DSD560 FS-15d | 100% | 2011-04-06 | 2011-11-29 | Cal 3 | JMB | CC E | DWALL | DESIGN | A | 820 | E | 2020 | C010 | 820_AB |
| 8200DSD520 |  | Zone A - D-Wall ELS Comment & Approval by MTR |  | 77d | 2010-11-17 A | 2011-02-01 A | 8200DSD510 | 100% | 2011-04-28 | 2011-07-13 |  | JMB | CC E | DWALL | DESIGN | A | 820 | E | 2020 | C010 | 820_AB |
| 8200DSD510 |  | Submit Zone A - D-Wall ELS to MTR | milestone | 0d | 2010-11-17 A | 2010-11-17 A | 8200DSD500 | 100% | 2011-04-27 | 2011-04-27 | Cal 3 | JMB | CC E | DWALL | DESIGN | A | 820 | E | 2020 | C010 | 820_AB |
| 8200DSD600 |  | Submit Zone B - D-Wall ELS to MTR | milestone | 0d | 2011-04-15 A | 2011-04-15 A | 8200DSD590 | 100% | 2011-06-20 | 2011-06-20 | Cal 3 | JMB | CC E | DWALL | DESIGN | A | 820 | E | 2020 | C010 | 820_AB |
| 8200DSD610 |  | Zone B - D-Wall ELS Comment & Approval by MTR |  | 31d | 2011-04-16 A | 2011-05-16 A | 8200DSD600 | 100% | 2011-06-19 | 2011-07-19 |  | JMB | CC E | DWALL | DESIGN | A | 820 | E | 2020 | C010 | 820_AB |

| ID | WBS | Activity | Type | Duration | Start | Finish | Predecessors | Complete | Planned start | Planned finish | Calendar | Resources | LEVEL 1 | LEVEL 2 | LEVEL 3 | Responsible (bm makes Global) | Contracts | Cost Centre | Location of Works | Phases of Works | 820_As-built | Classify | SUMMARY |
| --- | --- | --- | --- | --- | --- | --- | --- | --- | --- | --- | --- | --- | --- | --- | --- | --- | --- | --- | --- | --- | --- | --- | --- |
|  | 40 | **Method Statement Submission and Approval** |  |  | 2010-05-12 | 2010-07-17 |  |  |  |  |  |  |  |  |  |  |  |  |  |  |  |  |  |
|  | 10 | **Method Statement Submission and Approval** |  |  | 2010-05-12 | 2010-07-17 |  |  |  |  |  |  |  |  |  |  |  |  |  |  |  |  |  |
| 8200MTE100 |  | MS Preparation for Diaphragm wall |  | 39d | 2010-05-12 A | 2010-06-28 A | 8200KD1020 | 100% | 2011-01-31 | 2011-03-16 | Cal 3 |  | CC E | MS PREP | MS PREP | ARo | 820 | E | 2020 | C010 | 820_AB |  |  |
| 8200MTE120 |  | MS Comment & Approval by MTR |  | 19d | 2010-06-28 A | 2010-07-16 A | 8200MTE110 | 100% | 2011-03-05 | 2011-03-23 |  |  | CC E | MS PREP | MS PREP | ARo | 820 | E | 2020 | C010 | 820_AB |  |  |
| 8200MTE110 |  | MS Submission to MTR | milestone | 0d | 2010-06-28 A | 2010-06-28 A | 8200MTE100 | 100% | 2011-03-04 | 2011-03-04 | Cal 3 |  | CC E | MS PREP | MS PREP | ARo | 820 | E | 2020 | C010 | 820_AB |  |  |
| 8200MTE130 |  | Issue for Construction | milestone | 0d | 2010-07-17 A | 2010-07-17 A | 8200MTE120 FS+1d | 100% | 2011-04-02 | 2011-04-02 | Cal 3 |  | CC E | MS PREP | MS PREP | ARo | 820 | E | 2020 | C010 | 820_AB |  |  |
|  | 50 | **TTM Submission and Approval** |  |  | 2010-05-12 | 2010-11-08 |  |  |  |  |  |  |  |  |  |  |  |  |  |  |  |  |  |
|  | 10 | **TTM Scheme Submission & Approval** |  |  | 2010-05-12 | 2010-11-08 |  |  |  |  |  |  |  |  |  |  |  |  |  |  |  |  |  |
| 8200TME100 |  | Prepare Temporary Traffic Management (Main Road) |  | 23d | 2010-05-12 A | 2010-06-08 A | 8200KD1020 | 100% |  |  | Cal 3 |  | CC E | TTMPREP | TTMS/AP |  | 820 | E | 2020 | C040 | 820_AB | C1 | TTMS AP |
| 8200TME170 |  | Prepare TTM (Footpath Closure) |  | 23d | 2010-05-12 A | 2010-06-08 A | 8200KD1020 | 100% |  |  | Cal 3 |  | CC E | TTMPREP | TTMS/AP |  | 820 | E | 2020 | C040 | 820_AB | C1 | TTMS AP |
| 8200TME150 |  | XP Application & Approval (Main Road) |  | 31d | 2010-06-01 A | 2010-07-08 A | 8200TME110 SS+12d | 100% | 2011-01-08 | 2011-02-12 | Cal 3 |  | CC E | TTMPREP | TTMS/AP |  | 820 | E | 2020 | C040 | 820_AB | C1 |  |
| 8200TME110 |  | TTM reviewed by SLG |  | 48d | 2010-06-09 A | 2010-08-05 A | 8200TME100 | 100% | 2010-05-12 | 2010-07-09 | Cal 3 |  | CC E | TTMPREP | TTMS/AP |  | 820 | E | 2020 | C040 | 820_AB | C1 | TTMS AP |
| 8200TME175 |  | TTM Reviewed by SLG |  | 48d | 2010-06-09 A | 2010-08-05 A | 8200KD1020, 8200TME170 | 100% | 2010-05-12 | 2010-07-09 | Cal 3 |  | CC E | TTMPREP | TTMS/AP |  | 820 | E | 2020 | C040 | 820_AB | C1 | TTMS AP |
| 8200TME120 |  | Approved TTMS | milestone | 0d | 2010-08-05 A | 2010-08-05 A | 8200TME110 | 100% | 2010-05-12 | 2010-05-12 | Cal 3 |  | CC E | TTMPREP | TTMS/AP |  | 820 | E | 2020 | C040 | 820_AB | C1 | TTMS AP |
| 8200TME180 |  | Approved TTMS | milestone | 0d | 2010-08-05 A | 2010-08-05 A | 8200TME175 | 100% | 2010-05-12 | 2010-05-12 | Cal 3 |  | CC E | TTMPREP | TTMS/AP |  |  | E | 2020 |  | 820_AB | C1 |  |
| 8200TME130 |  | Issue Endorsed Drawings |  | 6d | 2010-08-06 A | 2010-08-12 A | 8200TME120 | 100% | 2010-05-12 | 2010-05-18 | Cal 3 |  | CC E | TTMPREP | TTMS/AP |  | 820 | E | 2020 | C040 | 820_AB | C1 | TTMS AP |
| 8200TME190 |  | Issue Endorsed Drawings |  | 6d | 2010-08-06 A | 2010-08-12 A | 8200TME180 | 100% | 2010-05-12 | 2010-05-18 | Cal 3 |  | CC E | TTMPREP | TTMS/AP |  |  | E | 2020 |  | 820_AB | C1 |  |
| 8200TME195 |  | Notification to RMO |  | 6d | 2010-08-14 A | 2010-08-20 A | 8200TME175, 8200TME190 | 100% | 2010-05-12 | 2010-05-18 | Cal 3 |  | CC E | TTMPREP | TTMS/AP |  | 820 | E | 2020 | C040 | 820_AB | C1 | TTMS AP |
| 8200TME210 |  | Implement TTM (Footpath Closure) | milestone | 0d | 2010-08-28 A | 2010-08-28 A | 8200TME195 FF, 8200TME195, 8200TME175 | 100% | 2010-05-12 | 2010-05-12 | Cal 3 |  | CC E | TTMPREP | TTMS/AP |  | 820 | E | 2020 | C040 | 820_AB | C1 | TTMS AP |
| 8200TME140 |  | Notification to RMO |  | 6d | 2010-10-19 A | 2010-10-25 A | 8200TME130, 8200TME100 SF | 100% | 2010-05-12 | 2010-05-18 | Cal 3 |  | CC E | TTMPREP | TTMS/AP |  | 820 | E | 2020 | C040 | 820_AB | C1 | TTMS AP |
| 8200TME160 |  | Implement TTM (Main Road) | milestone | 0d | 2010-11-08 A | 2010-11-08 A | 8200TME140, 8200TME150 | 100% | 2010-08-06 | 2010-08-06 | Cal 3 |  | CC E | TTMPREP | TTMS/AP |  | 820 | E | 2020 | C040 | 820_AB | C1 | TTMS AP |
|  | 60 | **Site Establishment** |  |  | 2010-05-12 | 2010-07-17 |  |  |  |  |  |  |  |  |  |  |  |  |  |  |  |  |  |
|  | 10 | **General** |  |  | 2010-05-12 | 2010-07-17 |  |  |  |  |  |  |  |  |  |  |  |  |  |  |  |  |  |
| 8200CCE330 |  | Preparation of CNP for Shaft Works |  | 40d | 2010-05-12 A | 2010-06-29 A | 8200KD1020 | 100% | 2011-01-31 | 2011-03-17 | Cal 3 |  | CC E | SITE ESTAB | o |  |  | E | 2020 |  | 820_AB |  |  |
| 8200CCE100 |  | Site Establishment for Works Areas 11.23,11.23A, 11.23B &11.26A |  | 24d | 2010-06-14 A | 2010-07-15 A | 8200AC1170 FS+18d, 8200AC1190 FS+18d, 8200AC1250 FS+18d, 8200KD1020 FS+18d, 8200AC1200 FS+18d | 100% | 2011-02-01 | 2011-03-03 | Cal 1 | Backhoe [144 h]; Other Skill Labour (Civil) [3456 h]; Plant Operator [1152 h] | CC E | SITE ESTAB | o |  | 820 | E | 2020 | C020 | 820_AB |  | VB & CC |
| 8200CCE530 |  | CNP Submission Approval by EPD |  | 14d | 2010-06-30 A | 2010-07-16 A | 8200CCE330 | 100% | 2011-03-21 | 2011-04-06 | Cal 3 |  | CC E | SITE ESTAB | o |  |  | E | 2020 |  | 820_AB |  |  |
| 8200CCE250 |  | Installation of Instrumentation for D-wall Construction |  | 11d | 2010-07-05 A | 2010-07-17 A | 8200CCE100, 8200CCE110 SS+12d | 100% | 2011-03-04 | 2011-03-16 | Cal 1 | Other Skill Labour (Civil) [26064 h] | CC E | SITE ESTAB | o | DCl |  | E | 2020 |  | 820_AB |  |  |

| ID | WBS | Activity | Type | Duration | Start | Finish | Predecessors | Complete | Planned start | Planned finish | Calendar | Resources | Priority A | Sum1 | Order | 820_As-built | LEVEL 1 | LEVEL 2 | LEVEL 3 | Cost Centre | Location of Works | QUANTITY | Rate | SUMMARY | Contracts | Works Area | Phases of Works | Classification of Works | Production Rate | Classify | Responsible by | SUM2 |
| --- | --- | --- | --- | --- | --- | --- | --- | --- | --- | --- | --- | --- | --- | --- | --- | --- | --- | --- | --- | --- | --- | --- | --- | --- | --- | --- | --- | --- | --- | --- | --- | --- |
|  | 70 | **Zone A** |  |  | 2010-06-19 | 2012-01-16 |  |  |  |  |  |  |  |  |  |  |  |  |  |  |  |  |  |  |  |  |  |  |  |  |  |  |
| 8200y0590 |  | D-wall Construction 38nos. & Pump Test | level of effort | 231d | 2010-07-17 A | 2011-03-04 A | 8200CCE150 SS | 100% | 2013-01-07 | 2013-08-25 |  |  | 4 | S1 | 1 | 820_AB |  |  |  |  |  |  |  |  |  |  |  |  |  |  |  |  |
| 8200y0600 |  | ELS | level of effort | 229d | 2011-01-17 A | 2011-11-03 A | 8200CCE200a10 SS | 100% | 2013-01-07 | 2013-08-23 |  |  | 4 | S1 | 2 | 820_AB |  |  |  |  |  |  |  |  |  |  |  |  |  |  |  |  |
|  | 10 | **General** |  |  | 2010-07-22 | 2010-09-30 |  |  |  |  |  |  |  |  |  |  |  |  |  |  |  |  |  |  |  |  |  |  |  |  |  |  |
| 8200CCE280 |  | Close Footpath (Zone 1) |  | 3d | 2010-07-22 A | 2010-07-24 A | 8200TME210 | 100% | 2011-02-01 | 2011-02-07 | Cal 1 | Other Skill Labour (Civil) [96 h]; Mobile Crane [3 h]; Plant Operator [24 h] |  |  |  | 820_AB | CC E | ZONE1SH | o | E | 2020 |  |  |  |  |  |  |  |  |  |  |  |
| 8200CCE370 |  | Trial Trench for Gas Main |  | 6d | 2010-07-26 A | 2010-07-31 A | 8200CCE280 | 100% | 2011-02-08 | 2011-02-14 | Cal 1 | Backhoe [6 h]; Plant Operator [48 h]; Other Skill Labour (Civil) [288 h] |  |  |  | 820_AB | CC E | ZONE1SH | o | E | 2020 |  |  |  |  |  |  |  |  |  |  |  |
| 8200CCE380 |  | Gas Min Diversion (GAS210) |  | 36d | 2010-08-16 A | 2010-09-30 A | 8200CCE370, 8200TME160 | 100% | 2011-02-15 | 2011-03-28 | Cal 1 |  |  |  |  | 820_AB | CC E | ZONE1SH | o | E | 2020 |  |  |  |  |  |  |  |  |  |  |  |
|  | 20 | **Zone A Construction** |  |  | 2010-06-19 | 2012-01-16 |  |  |  |  |  |  |  |  |  |  |  |  |  |  |  |  |  |  |  |  |  |  |  |  |  |  |
| 8200CCE110 |  | Pre-Drilling |  | 68d | 2010-06-19 A | 2010-09-14 A | 8200AC1320, 8200AC1530, 8200AC1190, 8200AC1310, 8200AC1510, 8200AC1330, 8200KD1020 FS+48d, 8200AC1250, 8200AC1270, 8200AC1520, 8200AC1230, 8200AC1210 | 100% | 2011-01-08 | 2011-04-01 | Cal 1 | Drilling Rig [72 h]; Plant Operator [576 h]; Other Skill Labour (Civil) [3456 h] |  |  |  | 820_AB | CC E | ZONE1SH | ZONE1B | E | 2020 | 20Nos.? | 4rigs, 4 d/hole | VB & CC | 820 | 11.26A | C050 | EPIW |  |  |  |  |
| 8200CCE150 |  | Guide Wall Installation/Predrilling |  | 107d | 2010-07-17 A | 2010-11-27 A | 8200DSE160, 8200MTE130, 8200DSD465 | 100% | 2011-03-12 | 2011-08-02 | Cal 1 | Drilling Rig [30 h]; Other Skill Labour (Civil) [1440 h]; Plant Operator [240 h] |  |  |  | 820_AB | CC E | ZONE1SH | ZONE1B | E | 2020 |  |  | VB & CC | 820 | 11.26A | C050 | EPIW |  |  |  |  |
| 8200sum350 |  | D-wall Construction 38nos. & Pump Test | level of effort | 181d | 2010-07-17 A | 2011-03-04 A | 8200CCE150 SS | 100% | 2013-01-07 | 2013-08-30 | Cal9(N)b |  | 4 | S1 |  | 820_AB |  |  |  |  |  |  |  |  |  |  |  |  |  |  |  |  |
| 8200CCE160a |  | Temp.D-Wall Installation (38 Panels) |  | 114d | 2010-07-30 A | 2010-12-18 A | 8200CCE110 SS+6d, 8200CCE150 SS+13d, 8200CCE530, 8200CCE250 SS+6d, 8200DSD490 | 100% | 2011-03-25 | 2011-08-25 | Cal 1 | D-wall Excavation [10085.2 m3]; Rebar [312.35 Tonne]; Concrete [30 m3]; D-wall Panel [5 Panels]; Diaphragm Wall Rig [25 h]; Mobile Crane [100 h]; Steel Fixer [2400 h]; Plant Operator [1000 h]; Other Skill Labour (Civil) [1200 h] |  |  |  | 820_AB | CC E | ZONE1SH | ZONE1B | E | 2020 |  |  |  |  |  |  |  |  |  |  |  |
| 8200CCE140 |  | Ground Treatment to Previous Seawall Zone (for D1 to D15) |  | 49d | 2010-08-02 A | 2010-10-04 A | 8200DSD490 | 100% | 2011-04-09 | 2011-06-16 | Cal 1 | Drilling Rig [36 h]; Other Skill Labour (Civil) [1728 h]; Plant Operator [288 h] |  |  |  | 820_AB | CC E | ZONE1SH | ZONE1B | E | 2020 | 75mL |  | VB & CC | 820 | 11.26A | C050 | EPIW | 4mL/d |  |  |  |
| 8200CCE180 |  | Toe Grouting |  | 59d | 2010-11-01 A | 2011-01-12 A | 8200CCE170 FS-6d | 100% | 2011-02-21 | 2011-05-07 | Cal 1 | Mobile Crane [24 h]; Other Skill Labour (Civil) [1152 h]; Plant Operator [192 h] |  |  |  | 820_AB | CC E | ZONE1SH | ZONE1B | E | 2020 |  |  | VB & CC | 820 | 11.26A | C050 | EPIW |  |  |  |  |
| 8200CCE170 |  | Shear Pin Installation |  | 47d | 2010-12-03 A | 2011-02-01 A |  | 100% | 2011-02-01 | 2011-03-30 | Cal 1 | Mobile Crane [20 h]; Drilling Rig [20 h]; Plant Operator [160 h]; Other Skill Labour (Civil) [960 h] |  |  |  | 820_AB | CC E | ZONE1SH | ZONE1B | E | 2020 |  |  | VB & CC | 820 | 11.26A | C050 | EPIW |  |  |  |  |
| 8200CCE195 |  | King Post & Gantry Post Installation (KP-4nos. & GP-6nos.) |  | 24d | 2010-12-23 A | 2011-01-24 A | 8200CCE160a | 100% | 2011-02-01 | 2011-03-03 | Cal 1 | nos. of Pile Installation [10 Nos]; Socketed H-pile Rig [66 h]; Plant Operator [528 h]; Other Skill Labour (Civil) [4752 h] |  |  |  | 820_AB | CC E | ZONE1SH | ZONE1B | E | 2020 | 11 piles | pile/3d |  |  |  |  |  |  |  |  |  |
| 8200CCE190 |  | Installation of instrumentation and Pumping Test |  | 40d | 2011-01-13 A | 2011-03-04 A | 8200CCE160a, 8200y0590 FF, 8200sum350 FF, 8200CCE180 FF+12d | 100% | 2011-02-28 | 2011-04-16 | Cal 1 | Other Skill Labour (Civil) [960 h]; Mobile Crane [30 h]; Plant Operator [240 h] |  |  |  | 820_AB | CC E | ZONE1SH | ZONE1B | E | 2020 |  |  | VB & CC | 820 | 11.26A | C050 | EPIW |  | A |  |  |
| 8200CCE185 |  | Capping Beam |  | 29d | 2011-02-11 A | 2011-03-16 A | 8200CCE200a10 FS+36d, 8200CCE180 FF+6d | 100% | 2011-02-01 | 2011-03-09 | Cal 1 | Backhoe [48 h]; Other Skill Labour (Civil) [2304 h]; Carpenter [2304 h]; Plant Operator [384 h] |  |  |  | 820_AB | CC E | ZONE1SH | ZONE1B | E | 2020 |  |  |  |  |  |  |  |  |  |  |  |
| 8200sum370 |  | Stell Bell Installation | level of effort | 33d | 2012-01-16 A | 2012-01-16 A |  | 100% | 2012-03-09 | 2012-04-19 | Cal9(N)b |  | 4 | S1 |  | 820_AB |  |  |  |  |  |  |  |  |  |  |  |  |  |  |  |  |
|  | 3 | **Zone A Excavation** |  |  | 2011-01-17 | 2012-01-11 |  |  |  |  |  |  |  |  |  |  |  |  |  |  |  |  |  |  |  |  |  |  |  |  |  |  |
|  | 1 | **VER.B** |  |  |  |  |  |  |  |  |  |  |  |  |  |  |  |  |  |  |  |  |  |  |  |  |  |  |  |  |  |  |
|  | 2 | **Shaft A ELS** |  |  | 2011-01-17 | 2012-01-11 |  |  |  |  |  |  |  |  |  |  |  |  |  |  |  |  |  |  |  |  |  |  |  |  |  |  |
| 8200CCE200a10 |  | Surface Levelling to +3.80mPD (for Capping Beam & S1 Strutting) |  | 50d | 2011-01-17 A | 2011-03-19 A | 8200DSD520, 8200CCE195 FS-6d | 100% | 2011-03-28 | 2011-06-04 | Cal 1 | Backhoe [216 h]; Plant Operator [1728 h]; Other Skill Labour (Civil) [3456 h]; Excavation - Soft [3500 m3] |  |  |  | 820_AB | CC E | ZONE1SH | ZONE1B | E | 2020 |  |  |  |  |  |  |  |  | A | JMB |  |
| 8200CCE200b10 |  | ELS for Box A (for Steel Bell installation) |  | 173d | 2011-02-28 A | 2011-10-14 A | 8200CCE200a10 FS-18d | 100% | 2011-06-21 | 2012-01-26 | Cal 1 | Mobile Crane [56 h]; Other Skill Labour (Civil) [2608 h]; Plant Operator [448 h] |  |  |  | 820_AB | CC E | ZONE1SH | ZONE1B | E | 2020 |  |  |  |  |  |  |  |  | A | JMB |  |
| 8200CCE281 |  | Tympanum Drilling & Steel Fixing |  | 104d | 2011-08-15 A | 2011-12-21 A | 8200CCE200b10 FS-21d | 100% | 2012-01-16 | 2012-05-31 | Cal 1 | Plant Operator [115.2 h]; Other Skill Labour (Civil) [1152 h]; Mobile Crane [12 h] |  |  |  | 820_AB | CC E | ZONE1SH | ZONE1B | E | 2020 |  |  | VB & CC | 820 | 11.26A | C050 | EPIW |  | A | JMB |  |
| 8200CCE242a10 |  | Base Slab Part 1 |  | 30d | 2011-10-04 A | 2011-11-09 A | 8200CCE195, 8200CCE190, 8200CCE200a10, 8200CCE200b10 FS+2d | 100% | 2012-01-16 | 2012-02-22 | Cal 1 | Excavation - Soft [14548.2 m3]; Backhoe [70 h]; Plant Operator [672 h]; Other Skill Labour (Civil) [1344 h]; Mobile Crane [14 h] |  |  |  | 820_AB | CC E | ZONE1SH | ZONE1B | E | 2020 | 16558.5m3 |  |  |  |  |  |  | 1000m3/d | A | JMB |  |
| 8200CCE200b10b |  | ELS for Box A (Remaining) |  | 42d | 2011-10-15 A | 2011-12-03 A | 8200CCE200a10 FS-18d, 8200y0600 FF, 8200CCE200b10 | 100% | 2012-01-16 | 2012-03-07 | Cal 1 | Mobile Crane [56 h]; Other Skill Labour (Civil) [2608 h]; Plant Operator [448 h] |  |  |  | 820_AB | CC E | ZONE1SH | ZONE1B | E | 2020 |  |  |  |  |  |  |  |  | A | JMB |  |
| 8200CCE242c10 |  | Base Slab Part 2 |  | 49d | 2011-11-10 A | 2012-01-11 A | 8200CCE200b10b, 8200CCE242a10 FS-25d | 100% | 2012-01-16 | 2012-03-15 | Cal 1 | Excavation - Soft [6427.2 m3]; Backhoe [72 h]; Plant Operator [672 h]; Other Skill Labour (Civil) [1152 h]; Mobile Crane [12 h] |  |  |  | 820_AB | CC E | ZONE1SH | ZONE1B | E | 2020 | 16558.5m3 |  |  |  |  |  |  | 1000m3/d | A | JMB |  |
| 8200CCE242b10 |  | Strutting Removal for S5 & S6 |  | 10d | 2011-11-15 A | 2011-11-26 A | 8200CCE242a10 | 100% | 2012-01-16 | 2012-01-30 | Cal 1 | Excavation - Soft [4363.33 m3]; Backhoe [54 h]; Plant Operator [504 h]; Other Skill Labour (Civil) [864 h]; Mobile Crane [9 h] |  |  |  | 820_AB | CC E | ZONE1SH | ZONE1B | E | 2020 | 16558.5m3 |  |  |  |  |  |  | 1000m3/d | A | JMB |  |
| 8200CCE278b10 |  | Brackets Installation |  | 3d | 2011-11-22 A | 2011-11-25 A | 8200CCE242a10 FS-7d | 100% | 2012-01-16 | 2012-01-18 | Cal 1 |  |  |  |  | 820_AB | CC E | ZONE1SH | ZONE1B | E | 2020 | 75m | 12m/2 wks | VB & CC | 820 | 11.26A | C050 | EPIW |  |  | JMB |  |
| 8200CCE279a10 |  | Steel Bell Installation |  | 11d | 2011-11-26 A | 2011-12-09 A | 8200sum370 FF, 8200CCE278b10, 8200CCE281 | 100% | 2012-01-16 | 2012-01-31 | Cal 1 | Other Skill Labour (Civil) [2016 h]; Mobile Crane [42 h]; Plant Operator [336 h] |  |  | 3 | 820_AB | CC E | ZONE1SH | ZONE1B | E | 2020 |  |  | VB & CC | 820 | 11.26A | C050 | EPIW |  | A | JMB | S |

Notes:
- 8200CCE190: Basis & Assumptions: -3 wk for equipment installation+2 wk for test

| ID | WBS | Activity | Type | Duration | Start | Finish | Predecessors | Complete | Planned start | Planned finish | Constraint | Calendar | Resources | Priority A | Sum1 | Order | 820_As-built | Classify | LEVEL 1 | LEVEL 2 | LEVEL 3 | SUMMARY | Contracts | Cost Centre | Works Area | Location of Works | Phases of Works | Classification of Works | QUANTITY |
| --- | --- | --- | --- | --- | --- | --- | --- | --- | --- | --- | --- | --- | --- | --- | --- | --- | --- | --- | --- | --- | --- | --- | --- | --- | --- | --- | --- | --- | --- |
|  | 80 | **Zone B** |  |  | 2010-08-23 | 2012-01-12 |  |  |  |  |  |  |  |  |  |  |  |  |  |  |  |  |  |  |  |  |  |  |  |
| 8200y640 |  | D-wall Construction 13+20nos. & Pump Test | level of effort | 283d | 2010-08-23 A | 2011-06-01 A | 8200CCE255 SS | 100% | 2011-08-15 | 2012-05-23 |  |  |  | 4 | S1 | 1 | 820_AB |  |  |  |  |  |  |  |  |  |  |  |  |
| 8200y650 |  | ELS | level of effort | 180d | 2011-04-29 A | 2011-11-09 A | 8200CCE200b16 SS | 100% | 2011-06-26 | 2011-12-22 |  |  |  | 4 | S1 | 2 | 820_AB |  |  |  |  |  |  |  |  |  |  |  |  |
|  | 10 | **General** |  |  | 2010-08-28 | 2011-03-12 |  |  |  |  |  |  |  |  |  |  |  |  |  |  |  |  |  |  |  |  |  |  |  |
| 8200CCE290 |  | TTM Implementation (Footpath Closure) |  | 1d | 2010-08-28 A | 2010-08-28 A | 8200TME210 | 100% | 2010-05-12 | 2010-05-12 |  | Cal 1 | Mobile Crane [6 h]; Other Skill Labour (Civil) [288 h]; Plant Operator [96 h]; Backhoe [6 h] |  |  |  | 820_AB | C1 | CC E | ZONE2SH | o | VB & CC | 820 | E | 11.26A | 2020 | C020 | EPIW |  |
| 8200CCE295 |  | Trial Trench to Expose Utilities @ Footpath |  | 12d | 2010-08-30 A | 2010-09-14 A | 8200CCE290 | 100% | 2011-01-08 | 2011-01-21 |  | Cal 1 | Backhoe [12 h]; Plant Operator [96 h]; Other Skill Labour (Civil) [576 h] |  |  |  | 820_AB | C1 | CC E | ZONE2SH | o | VB & CC | 820 | E | 11.26A | 2020 | C020 | EPIW |  |
| 8200CCE297 |  | Trial Trench for CLP Cable208&209 |  | 16d | 2010-08-30 A | 2010-09-18 A | 8200CCE290 | 100% | 2011-01-08 | 2011-01-26 |  | Cal 1 | Other Skill Labour (Civil) [768 h]; Plant Operator [128 h]; Backhoe [16 h] |  |  |  | 820_AB | C1 | CC E | ZONE2SH | o | VB & CC | 820 | E | 11.26A | 2020 | C020 | EPIW |  |
| 8200CCE303 |  | Preparation works & Excavation for Utilities Diversion |  | 62d | 2010-08-30 A | 2010-11-15 A | 8200CCE290, 8200CCE293, 8200CCE290 FF+5d | 100% | 2010-05-12 | 2010-07-31 |  | Cal 1 |  |  |  |  | 820_AB | C1 | CC E | ZONE2SH | o |  |  | E |  | 2020 |  |  |  |
| 8200CCE285 |  | Tree Transplant by 801 Designated Contractor | milestone | 0d | 2010-09-14 A | 2010-09-14 A |  | 100% |  |  | finish on or after 2010-09-13 | Cal 1 |  |  |  |  | 820_AB | C1 | CC E | ZONE2SH | o | VB & CC | 820 | E | 11.26A | 2020 | C020 | EPIW |  |
| 8200CCE395 |  | SlewTelecomCable(HGC204+CATV208)to UtilityTrough |  | 18d | 2010-10-26 A | 2010-11-15 A | 8200CCE390, 8200CCE385 | 100% | 2011-05-31 | 2011-06-23 |  | Cal 1 | Other Skill Labour (Civil) [864 h]; Plant Operator [144 h]; Backhoe [18 h] |  |  |  | 820_AB | C1 | CC E | ZONE2SH | o | UTILITY | 820 | E | 11.26A | 2020 | C020 | EPIW |  |
| 8200CCE400 |  | SlewTelecomCable(WTT205+PCCW205)to UtilityTrough |  | 18d | 2010-10-26 A | 2010-11-15 A | 8200CCE390, 8200CCE385 | 100% | 2011-05-31 | 2011-06-23 |  | Cal 1 | Other Skill Labour (Civil) [864 h]; Plant Operator [144 h]; Backhoe [18 h] |  |  |  | 820_AB | C1 | CC E | ZONE2SH | o | UTILITY | 820 | E | 11.26A | 2020 | C020 | EPIW |  |
| 8200CCE293 |  | TTM Implementation (Main Road) |  | 1d | 2010-11-08 A | 2010-11-08 A | 8200TME160, 8200CCE285 | 100% | 2010-08-07 | 2010-08-07 |  | Cal 1 | Plant Operator [576 h]; Other Skill Labour (Civil) [3456 h]; Backhoe [72 h] |  |  |  | 820_AB | C1 | CC E | ZONE2SH | o |  |  | E |  | 2020 |  |  |  |
| 8200CCE298 |  | Excavate Trench for Utilities Diversion |  | 13d | 2010-11-09 A | 2010-11-23 A | 8200TME160, 8200CCE293 | 100% | 2011-01-08 | 2011-01-22 |  | Cal 1 | Backhoe [36 h]; Other Skill Labour (Civil) [864 h]; Plant Operator [288 h] |  |  |  | 820_AB |  | CC E | ZONE2SH | o |  |  | E |  | 2020 |  |  |  |
| 8200CCE305 |  | Expose and Protect Saltwater Main (SW203) |  | 15d | 2010-11-15 A | 2010-12-01 A | 8200CCE300 | 100% | 2011-01-08 | 2011-01-25 |  | Cal 1 | Other Skill Labour (Civil) [720 h]; Plant Operator [120 h]; Backhoe [15 h] |  |  |  | 820_AB | C1 | CC E | ZONE2SH | o | UTILITY | 820 | E | 11.26A | 2020 | C020 | EPIW | 75mL |
| 8200CCE310 |  | Slew HGC+Cable TV Cable (HGC204+CATV208) |  | 27d | 2010-11-15 A | 2010-12-15 A | 8200CCE300, 8200CCE297 FS+14d | 100% | 2011-01-08 | 2011-02-12 |  | Cal 1 | Other Skill Labour (Civil) [672 h]; Plant Operator [112 h]; Backhoe [14 h] |  |  |  | 820_AB | C1 | CC E | ZONE2SH | o | UTILITY | 820 | E | 11.26A | 2020 | C020 | EPIW | 2x70mL |
| 8200CCE315 |  | Slew WTT+PCCW Cable (WTT205+PCCW205) |  | 27d | 2010-11-15 A | 2010-12-15 A | 8200CCE300 | 100% | 2011-01-08 | 2011-02-12 |  | Cal 1 | Other Skill Labour (Civil) [672 h]; Plant Operator [112 h]; Backhoe [14 h] |  |  |  | 820_AB |  | CC E | ZONE2SH | o | UTILITY | 820 | E | 11.26A | 2020 | C020 | EPIW | 2x70mL |
| 8200CCE390 |  | Slew 400kV Cable (CLP208) |  | 43d | 2010-11-16 A | 2011-01-08 A | 8200CCE293 | 100% | 2010-08-07 | 2010-10-02 |  | Cal 1 | Other Skill Labour (Civil) [1152 h]; Plant Operator [192 h]; Backhoe [24 h] |  |  |  | 820_AB | C1 | CC E | ZONE2SH | o | UTILITY | 820 | E | 11.26A | 2020 | C020 | EPIW |  |
| 8200CCE300 |  | Gas Main Diversion (GAS209&GAS208) |  | 15d | 2010-11-24 A | 2010-12-10 A | 8200CCE295, 8200CCE298 SS+8d | 100% | 2011-01-18 | 2011-02-08 |  | Cal 1 | Other Skill Labour (Civil) [864 h]; Plant Operator [288 h]; Backhoe [36 h] |  |  |  | 820_AB |  | CC E | ZONE2SH | o | UTILITY | 820 | E | 11.26A | 2020 | C020 | EPIW | 70mL |
| 8200CCE325 |  | Slew CLP 11kV Cable |  | 7d | 2010-12-17 A | 2010-12-24 A | 8200CCE303, 8200CCE290, 8200CCE303 SS+24d, 8200CCE300, 8200CCE297 FS+14d | 100% | 2011-02-17 | 2011-02-24 |  | Cal 1 | Other Skill Labour (Civil) [576 h]; Plant Operator [96 h]; Backhoe [12 h] |  |  |  | 820_AB | C1 | CC E | ZONE2SH | o | UTILITY | 820 | E | 11.26A | 2020 | C020 | EPIW |  |
| 8200CCE405 |  | Backfill & Protection for Utilities |  | 50d | 2011-01-10 A | 2011-03-12 A | 8200CCE400, 8200CCE395 | 100% | 2011-02-28 | 2011-05-04 |  | Cal 1 | Other Skill Labour (Civil) [1728 h]; Plant Operator [288 h]; Backhoe [36 h] |  |  |  | 820_AB | C1 | CC E | ZONE2SH | o | VB & CC | 820 | E | 11.26A | 2020 | C050 |  |  |
|  | 20 | **Zone B West (Not within Utilities Zone)** |  |  | 2010-08-23 | 2011-06-01 |  |  |  |  |  |  |  |  |  |  |  |  |  |  |  |  |  |  |  |  |  |  |  |
| 8200CCE255 |  | Pre-drilling/Guide Wall Installation |  | 23d | 2010-08-23 A | 2010-09-21 A | 8200MTE130, 8200AC1170, 8200AC1200, 8200AC1250, 8200CCE150, 8200DSD555 | 100% | 2011-03-12 | 2011-04-09 |  | Cal 1 | Drilling Rig [24 h]; Backhoe [24 h]; Other Skill Labour (Civil) [1152 h]; Plant Operator [384 h] |  |  |  | 820_AB |  | CC E | ZONE2SH | ZONE2B | VB & CC | 820 | E | 11.26A | 2020 | C050 | EPIW |  |
| 8200sum380 |  | D-wall Construction 13+20nos. & Pump Test | level of effort | 283d | 2010-08-23 A | 2011-06-01 A | 8200CCE255 SS | 100% | 2011-08-15 | 2012-05-23 |  |  |  | 4 | S1 |  | 820_AB |  |  |  |  |  |  |  |  |  |  |  |  |
| 8200CCE260a |  | Temp.D-Wall Installation (13Panels) |  | 84d | 2010-09-15 A | 2010-12-28 A | 8200DSD580, 8200CCE255 FS-6d | 100% | 2011-04-28 | 2011-08-16 |  | Cal 1 | D-wall Excavation [3940.6 m3]; D-wall Panel [2 Panels]; Concrete [490.2 m3]; Rebar [127 Tonne]; Mobile Crane [96 h]; Diaphragm Wall Rig [24 h]; Steel Fixer [576 h]; Concretor [96 h]; Plant Operator [960 h]; Other Skill Labour (Civil) [1728 h] |  |  |  | 820_AB |  | CC E | ZONE2SH | ZONE2B |  |  | E |  | 2020 |  |  |  |
| 8200CCE265 |  | Shear Pin Installation |  | 87d | 2011-01-17 A | 2011-05-12 A | 8200CCE260a FS-6d | 100% | 2011-02-28 | 2011-06-23 |  | Cal 1 | Drilling Rig [18 h]; Plant Operator [144 h]; Other Skill Labour (Civil) [864 h] |  |  |  | 820_AB |  | CC E | ZONE2SH | ZONE2B | VB & CC | 820 | E | 11.26A | 2020 | C050 | EPIW |  |
| 8200CCE270 |  | Toe Grouting |  | 85d | 2011-01-17 A | 2011-05-07 A | 8200sum380 FF, 8200CCE265 FF, 8200y640 FF, 8200CCE260a | 100% | 2011-04-01 | 2011-07-27 |  | Cal 1 | Other Skill Labour (Civil) [864 h]; Plant Operator [144 h]; Drilling Rig [18 h] |  |  |  | 820_AB |  | CC E | ZONE2SH | ZONE2B | VB & CC | 820 | E | 11.26A | 2020 | C050 | EPIW |  |
| 8200CCE320 |  | Stitch Grouting btn D-Wall & FS1 Culvert |  | 22d | 2011-04-04 A | 2011-05-06 A | 8200CCE260a, 8200CCE270 FS-12d | 100% | 2011-06-21 | 2011-07-18 |  | Cal 1 | Other Skill Labour (Civil) [1440 h]; Plant Operator [576 h]; Drilling Rig [12 h] |  |  |  | 820_AB |  | CC E | ZONE2SH | ZONE2B |  |  | E |  | 2020 |  |  |  |

| ID | WBS | Activity | Type | Duration | Start | Finish | Predecessors | Complete | Planned start | Planned finish | Calendar | Resources | Classify | LEVEL 1 | LEVEL 2 | LEVEL 3 | Cost Centre | Location of Works | 820_As-built | SUMMARY | Contracts | Works Area | Phases of Works | Classification of Works | Production Rate | QUANTITY | Rate | Priority A | Sum1 | Responsible by | SUM2 | Order |
| --- | --- | --- | --- | --- | --- | --- | --- | --- | --- | --- | --- | --- | --- | --- | --- | --- | --- | --- | --- | --- | --- | --- | --- | --- | --- | --- | --- | --- | --- | --- | --- | --- |
|  | 30 | **Zone B Remaining** |  |  | 2010-11-01 | 2011-09-15 |  |  |  |  |  |  |  |  |  |  |  |  |  |  |  |  |  |  |  |  |  |  |  |  |  |  |
| 8200CCE345a |  | Temp.D-Wall Installation ( 20 Panels) |  | 151d | 2010-11-01 A | 2011-05-15 A | 8200CCE260a, 8200CCE340 FS-6d | 100% | 2011-03-21 | 2011-10-08 | Cal 1 | Diaphragm Wall Rig [48 h]; Steel Fixer [1152 h]; Concretor [384 h]; Mobile Crane [192 h]; Concrete [1960.8 m3]; Rebar [508 Tonne]; D-wall Excavation [15762.4 m3]; D-wall Panel [8 Panels]; Plant Operator [1920 h]; Other Skill Labour (Civil) [3456 h] | C1 | CC E | ZONE2SH | ZONE2G | E | 2020 | 820_AB |  |  |  |  |  |  |  |  |  |  |  |  |  |
| 8200CCE340 |  | Pre-drilling/ Guide Wall Installation |  | 39d | 2011-01-09 A | 2011-02-28 A | 8200CCE325, 8200CCE315, 8200CCE305, 8200CCE310, 8200CCE335 SS | 100% | 2011-02-01 | 2011-03-21 | Cal 1 | Drilling Rig [24 h]; Other Skill Labour (Civil) [1152 h]; Plant Operator [192 h] | C1 | CC E | ZONE2SH | ZONE2G | E | 2020 | 820_AB | VB & CC | 820 | 11.26A | C050 | EPIW |  |  |  |  |  |  |  |  |
| 8200CCE335 |  | Ground Treatment to Previous Seawall Zone |  | 91d | 2011-01-10 A | 2011-05-07 A | 8200CCE325, 8200CCE390, 8200CCE315 | 100% | 2011-02-01 | 2011-06-01 | Cal 1 | Drilling Rig [24 h]; Other Skill Labour (Civil) [1152 h]; Plant Operator [192 h] | C1 | CC E | ZONE2SH | ZONE2G | E | 2020 | 820_AB | VB & CC | 820 | 11.26A | C050 | EPIW | 4mL/d | 30mL |  |  |  |  |  |  |
| 8200CCE360 |  | Stitch Grouting between D-Wall & FS1 Culvert |  | 40d | 2011-03-14 A | 2011-05-06 A | 8200CCE345a FS-2d | 100% | 2011-07-06 | 2011-08-25 | Cal 1 | Other Skill Labour (Civil) [1344 h]; Drilling Rig [28 h]; Plant Operator [224 h] | C1 | CC E | ZONE2SH | ZONE2G | E | 2020 | 820_AB |  |  |  |  |  |  |  |  |  |  |  |  |  |
| 8200CCE350 |  | Shear Pin Installation |  | 40d | 2011-03-17 A | 2011-05-12 A | 8200CCE345a FF-3d | 100% | 2011-07-14 | 2011-09-02 | Cal 1 | Drilling Rig [24.62 h]; Plant Operator [197 h]; Other Skill Labour (BS / E&M) [1182 h] | C1 | CC E | ZONE2SH | ZONE2G | E | 2020 | 820_AB | VB & CC | 820 | 11.26A | C050 | EPIW |  |  |  |  |  |  |  |  |
| 8200CCE457 |  | King Post & Gantry Post Installation (7KP & 2GP) |  | 34d | 2011-03-22 A | 2011-05-07 A | 8200CCE345a, 8200CCE350 FS-16d | 100% | 2011-06-21 | 2011-08-02 | Cal 1 | Plant Operator [432 h]; nos. of Pile Installation [9 Nos]; Socketed H-pile Rig [54 h]; Other Skill Labour (Civil) [1728 h] | C1 | CC E | ZONE2SH | ZONE2G | E | 2020 | 820_AB |  |  |  |  |  |  | 11 piles | pile/3d |  |  |  |  |  |
| 8200CCE355 |  | Toe Grouting |  | 26d | 2011-03-31 A | 2011-05-07 A | 8200CCE350 FS-13d, 8200CCE305, 8200CCE345a | 100% | 2011-07-29 | 2011-08-30 | Cal 1 | Drilling Rig [13 h]; Plant Operator [104 h]; Other Skill Labour (Civil) [624 h] | C1 | CC E | ZONE2SH | ZONE2G | E | 2020 | 820_AB | VB & CC | 820 | 11.26A | C050 | EPIW |  |  |  |  |  |  |  |  |
| 8200CCE362 |  | Capping Beam |  | 40d | 2011-04-11 A | 2011-06-06 A | 8200CCE355 FS-5d | 100% | 2011-06-21 | 2011-08-09 | Cal 1 | Backhoe [26 h]; Other Skill Labour (Civil) [2496 h]; Carpenter [2496 h]; Plant Operator [208 h] |  | CC E | ZONE2SH | ZONE2G | E | 2020 | 820_AB |  |  |  |  |  |  |  |  |  |  |  |  |  |
| 8200CCE365 |  | Install Instrumentation+Pumping Test |  | 37d | 2011-04-11 A | 2011-06-01 A | 8200CCE360 FS-5d, 8200CCE320 FS-5d, 8200CCE270 FS-5d, 8200y640 FF, 8200sum380 FF, 8200CCE355 FS-5d | 100% | 2011-08-04 | 2011-09-21 | Cal 1 | Mobile Crane [22 h]; Other Skill Labour (Civil) [1056 h]; Plant Operator [176 h] | C1 | CC E | ZONE2SH | ZONE2G | E | 2020 | 820_AB | VB & CC | 820 | 11.26A | C050 | EPIW |  |  |  |  |  |  |  |  |
| 8200CCE450 |  | Setup & Install Four Prebored H-piles (adjacent to Existing B17) |  | 13d | 2011-04-18 A | 2011-05-07 A | 8200CCE345a, 8200CCE350 FS-3d | 100% | 2011-07-08 | 2011-07-25 | Cal 1 | nos. of Pile Installation [4 Nos]; Socketed H-pile Rig [6 h]; Other Skill Labour (Civil) [1152 h]; Plant Operator [192 h] | C1 | CC E | ZONE2SH | ZONE2G | E | 2020 | 820_AB |  |  |  |  |  |  | 4 nos. | pile/3d |  |  |  |  |  |
| 8200CCE385 |  | Utilities Common Trough |  | 12d | 2011-08-31 A | 2011-09-15 A | 8200CCE345a, 8200CCE350 SS+6d | 100% | 2012-01-16 | 2012-02-01 | Cal 1 |  | C1 | CC E | ZONE2SH | ZONE2G | E | 2020 | 820_AB | VB & CC | 820 | 11.26A | C020 | EPIW | 5mL/d | 75mLx5mW |  |  |  |  |  |  |
|  | 40 | **Zone B Excavation** |  |  | 2011-04-29 | 2012-01-12 |  |  |  |  |  |  |  |  |  |  |  |  |  |  |  |  |  |  |  |  |  |  |  |  |  |  |
| 8200sum400 |  | ELS | level of effort | 180d | 2011-06-06 A | 2011-12-22 A | 8200CCE200b16 | 100% | 2011-06-26 | 2011-12-22 |  |  |  |  |  |  |  |  | 820_AB |  |  |  |  |  |  |  |  | 4 | S1 |  |  |  |
| 8200sum410 |  | Steel Bell Installation | level of effort | 0d | 2012-01-12 A | 2012-01-12 A |  | 100% | 2012-01-15 | 2012-01-15 |  |  |  |  |  |  |  |  | 820_AB |  |  |  |  |  |  |  |  | 4 | S1 |  |  |  |
|  | 2 | **Shaft B ELS** |  |  | 2011-04-29 | 2011-12-13 |  |  |  |  |  |  |  |  |  |  |  |  |  |  |  |  |  |  |  |  |  |  |  |  |  |  |
| 8200CCE200b16 |  | Surface Levelling to +3.80mPD (for Capping Beam & S1 Strutting) |  | 28d | 2011-04-29 A | 2011-06-06 A | 8200CCE362 FS-14d, 8200DSD610, 8200CCE385, 8200AC1150, 8200AC1350, 8200CCE450, 8200AC1140, 8200AC1300, 8200CCE395, 8200CCE457, 8200CCE400, 8200AC1330, 8200AC1340 | 100% | 2011-08-24 | 2011-09-28 | Cal 1 | Plant Operator [192 h]; Excavation - Soft [3500 m3]; Backhoe [24 h]; Other Skill Labour (Civil) [576 h] | C1 | CC E | ZONE2SH | ZONE2EX | E | 2020 | 820_AB | VB & CC | 820 | 11.26A | C050 | EPIW | 1300m3/d+6dx2ConStrut | 2150m2 Soft=5510m3 | 1600m3/d |  |  | JMB |  |  |
| 8200CCE200b20 |  | ELS for Box B (for Steel Bell Installation) |  | 113d | 2011-05-23 A | 2011-10-17 A |  | 100% | 2011-06-21 | 2011-11-10 | Cal 1 | Mobile Crane [56 h]; Other Skill Labour (Civil) [2608 h]; Plant Operator [448 h] | A | CC E | ZONE1SH | ZONE1B | E | 2020 | 820_AB |  |  |  |  |  |  |  |  |  |  | JMB |  |  |
| 8200CCE282 |  | Tympanum Drilling & Steel Fixing |  | 65d | 2011-09-07 A | 2011-11-28 A | 8200CCE200b20 FS-19d | 100% | 2012-01-16 | 2012-04-03 | Cal 1 | Mobile Crane [12 h]; Plant Operator [115.2 h]; Other Skill Labour (Civil) [1152 h] | A | CC E | ZONE1SH | ZONE1B | E | 2020 | 820_AB | VB & CC | 820 | 11.26A | C050 | EPIW |  |  |  |  |  | JMB |  |  |
| 8200CCE242a20 |  | Base Slab Part 1 |  | 29d | 2011-09-26 A | 2011-10-31 A | 8200CCE200b20 | 100% | 2012-01-16 | 2012-02-21 | Cal 1 | Excavation - Soft [14548.2 m3]; Backhoe [70 h]; Plant Operator [672 h]; Other Skill Labour (Civil) [1344 h]; Mobile Crane [14 h] | A | CC E | ZONE1SH | ZONE1B | E | 2020 | 820_AB |  |  |  |  |  | 1000m3/d | 16558.5m3 |  |  |  | JMB |  |  |
| 8200CCE200b21 |  | ELS for Box B (Remaining) |  | 37d | 2011-10-18 A | 2011-12-03 A | 8200CCE200b20, 8200y650 FF | 100% | 2012-01-16 | 2012-03-01 | Cal 1 | Mobile Crane [56 h]; Other Skill Labour (Civil) [2608 h]; Plant Operator [448 h] | A | CC E | ZONE1SH | ZONE1B | E | 2020 | 820_AB |  |  |  |  |  |  |  |  |  |  | JMB |  |  |
| 8200CCE242b20 |  | Strutting Removal for S5 & S6 |  | 7d | 2011-10-26 A | 2011-11-02 A | 8200CCE242a20 FS-5d | 100% | 2012-01-16 | 2012-01-26 | Cal 1 | Excavation - Soft [4363.33 m3]; Backhoe [54 h]; Plant Operator [504 h]; Other Skill Labour (Civil) [864 h]; Mobile Crane [9 h] | A | CC E | ZONE1SH | ZONE1B | E | 2020 | 820_AB |  |  |  |  |  | 1000m3/d | 16558.5m3 |  |  |  | JMB |  |  |
| 8200CCE278b20 |  | Brackets Installation |  | 2d | 2011-10-29 A | 2011-11-01 A | 8200CCE242a20 FS-3d | 100% | 2012-01-16 | 2012-01-17 | Cal 1 |  |  | CC E | ZONE1SH | ZONE1B | E | 2020 | 820_AB | VB & CC | 820 | 11.26A | C050 | EPIW |  | 75m | 12m/2 wks |  |  | JMB |  |  |
| 8200CCE242c20 |  | Base Slab Part 2 |  | 36d | 2011-11-01 A | 2011-12-13 A | 8200CCE242a20 FS-16d, 8200CCE200b21 FS-8d | 100% | 2012-01-16 | 2012-02-29 | Cal 1 | Excavation - Soft [6427.2 m3]; Backhoe [72 h]; Plant Operator [672 h]; Other Skill Labour (Civil) [1152 h]; Mobile Crane [12 h] | A | CC E | ZONE1SH | ZONE1B | E | 2020 | 820_AB |  |  |  |  |  | 1000m3/d | 16558.5m3 |  |  |  | JMB |  |  |
| 8200CCE279a20 |  | Steel Bell Installation |  | 12d | 2011-11-02 A | 2011-11-16 A | 8200CCE242b20 FS-1d, 8200CCE282, 8200CCE278b20 FS-1d | 100% | 2012-01-16 | 2012-02-01 | Cal 1 | Other Skill Labour (Civil) [2016 h]; Mobile Crane [42 h]; Plant Operator [336 h] | A | CC E | ZONE1SH | ZONE1B | E | 2020 | 820_AB | VB & CC | 820 | 11.26A | C050 | EPIW |  |  |  |  |  | JMB | S | 3 |

Notes:
- 8200CCE365: Basis & Assumptions: -3 wk for equipment installation+2 wk for test

| ID | WBS | Activity | Type | Duration | Start | Finish | Predecessors | Complete | Planned start | Planned finish | Total float | Free float | Constraint | Calendar | Resources | Cost Centre | Location of Works | 820_As-built | Responsible by | LEVEL 1 | LEVEL 2 | LEVEL 3 | SUMMARY | Contracts | Works Area | Sub-locationof Works | Phases of Works | Classification of Works |
| --- | --- | --- | --- | --- | --- | --- | --- | --- | --- | --- | --- | --- | --- | --- | --- | --- | --- | --- | --- | --- | --- | --- | --- | --- | --- | --- | --- | --- |
|  | 90 | **Ventilation Building** |  |  | 2012-09-01 | 2015-08-24 |  |  |  |  |  |  |  |  |  |  |  |  |  |  |  |  |  |  |  |  |  |  |
|  | 1 | **Access Dates for Designated Contractors** |  |  | 2014-04-28 | 2014-04-28 |  |  |  |  |  |  |  |  |  |  |  |  |  |  |  |  |  |  |  |  |  |  |
| 8200CCE660 |  | *815 - Ironmongery Delivery to Site | milestone | 0d | 2014-04-28 A | 2014-04-28 A |  | 100% |  |  |  |  | start on 2014-01-25 |  |  | E | 2050 | 820_AB |  |  |  |  |  |  |  |  |  |  |
|  | 10 | **Reinforced Concrete Structure** |  |  | 2012-09-01 | 2015-08-13 |  |  |  |  |  |  |  |  |  |  |  |  |  |  |  |  |  |  |  |  |  |  |
|  | 8 | **Shaft Box B (Northern Portion)** |  |  | 2012-09-01 | 2014-05-30 |  |  |  |  |  |  |  |  |  |  |  |  |  |  |  |  |  |  |  |  |  |  |
|  | 1 | **G/L 1 - 5** |  |  | 2013-01-04 | 2013-11-27 |  |  |  |  |  |  |  |  |  |  |  |  |  |  |  |  |  |  |  |  |  |  |
| 8200CCD320 |  | Construction of L2 Slab |  | 26d | 2013-01-04 A | 2013-07-19 A | 8200CCD615 FS-1d | 100% | 2013-01-04 | 2013-02-02 |  |  |  | Cal 1 | Steel Fixer [832 h]; Concretor [96 h]; Carpenter [832 h]; Other Skill Labour (Civil) [416 h] | D | 2020 | 820_AB | DJa | CC D | CUT&CTU | CCVS | VB & CC | 820 | 11.26A | TL | C090 | EPIW |
| 8200CCD330 |  | Construction of L1 Slab |  | 26d | 2013-02-20 A | 2013-10-16 A | 8200CCD320 | 100% | 2013-02-20 | 2013-03-21 |  |  |  | Cal 1 | Steel Fixer [832 h]; Concretor [96 h]; Carpenter [832 h]; Other Skill Labour (Civil) [416 h] | D | 2020 | 820_AB | DJa | CC D | CUT&CTU | CCVS | VB & CC | 820 | 11.26A | TL | C090 | EPIW |
| 8200CCD390 |  | Construction of L0 Slab |  | 26d | 2013-06-03 A | 2013-11-27 A | 8200CCD330 | 100% | 2013-06-03 | 2013-07-06 |  |  |  | Cal 1 | Steel Fixer [832 h]; Concretor [96 h]; Carpenter [832 h]; Other Skill Labour (Civil) [416 h] | D | 2020 | 820_AB | DJa | CC D | CUT&CTU | CCVS | VB & CC | 820 | 11.26A | TL | C090 | EPIW |
|  | 2 | **G/L 5 - 9** |  |  | 2012-09-01 | 2013-06-15 |  |  |  |  |  |  |  |  |  |  |  |  |  |  |  |  |  |  |  |  |  |  |
| 8200CCD400 |  | Construction of L2 Slab |  | 71d | 2012-09-01 A | 2012-11-28 A |  | 100% |  |  |  |  |  | Cal 1 | Steel Fixer [2016 h]; Concretor [96 h]; Carpenter [2016 h]; Other Skill Labour (Civil) [568 h] | D | 2020 | 820_AB | DJa | CC D | CUT&CTU | CCVS | VB & CC | 820 | 11.26A | TL | C090 | EPIW |
| 8200CCD410 |  | Construction of L1 Slab (including 2 FS Tank) |  | 80d | 2012-11-29 A | 2013-04-27 A | 8200CCD400 | 100% | 2012-11-29 | 2013-03-08 |  |  |  | Cal 1 | Steel Fixer [2016 h]; Concretor [96 h]; Carpenter [2016 h]; Other Skill Labour (Civil) [640 h] | D | 2020 | 820_AB | DJa | CC D | CUT&CTU | CCVS | VB & CC | 820 | 11.26A | TL | C090 | EPIW |
| 8200CCD420 |  | Construction of L0 Slab |  | 55d | 2013-04-29 A | 2013-06-15 A | 8200CCD410 | 100% | 2013-04-29 | 2013-07-11 |  |  |  | Cal 1 | Steel Fixer [1760 h]; Concretor [96 h]; Carpenter [1760 h]; Other Skill Labour (Civil) [880 h] | D | 2020 | 820_AB | DJa | CC D | CUT&CTU | CCVS | VB & CC | 820 | 11.26A | TL | C090 | EPIW |
|  | 3 | **G/L 1 - 6** |  |  | 2013-11-11 | 2014-05-30 |  |  |  |  |  |  |  |  |  |  |  |  |  |  |  |  |  |  |  |  |  |  |
| 8200CCD625 |  | Gantry impact from TBM Re-assembly and False Tunnel Dismantling |  | 61d | 2013-11-11 A | 2014-02-15 A | 8200TBC575 | 100% | 2013-11-11 | 2014-01-23 |  |  |  | Cal 1 |  | D | 2020 | 820_AB | DJa | CC D | CUT&CTU | CCVS | VB & CC | 820 | 11.26A | TL | C090 | EPIW |
| 8200CCD635 |  | Ch137+968 to Ch138+328 (200 Ring nos.) |  | 30d | 2013-12-14 A | 2014-04-04 A | 8200TBC860 SS | 100% | 2013-12-14 | 2014-01-21 |  |  |  | Cal 1 |  | D | 2020 | 820_AB | DJa | CC D | CUT&CTU | CCVS | VB & CC | 820 | 11.26A | TL | C090 | EPIW |
| 8200CCD430 |  | Construction of G/L Slab |  | 20d | 2014-03-04 A | 2014-04-26 A | 8200CCD625, 8200CCD390 | 100% | 2014-03-04 | 2014-03-26 |  |  |  | Cal 1 | Carpenter [320 h]; Steel Fixer [160 h]; Other Skill Labour (Civil) [320 h] | D | 2020 | 820_AB | DJa | CC D | CUT&CTU | CCVS | VB & CC | 820 | 11.26A | TL | C090 | EPIW |
| 8200CCD440 |  | Construction of U1 Slab |  | 15d | 2014-04-14 A | 2014-04-25 A | 8200CCD430 | 100% | 2014-04-14 | 2014-05-05 |  |  |  | Cal 1 | Steel Fixer [120 h]; Carpenter [240 h]; Other Skill Labour (Civil) [240 h] | D | 2020 | 820_AB | DJa | CC D | CUT&CTU | CCVS | VB & CC | 820 | 11.26A | TL | C090 | EPIW |
| 8200CCD480 |  | Construction of Service Slab |  | 12d | 2014-05-12 A | 2014-05-22 A | 8200CCD440 | 100% | 2014-05-23 | 2014-06-06 |  |  |  | Cal 1 | Steel Fixer [96 h]; Carpenter [192 h]; Other Skill Labour (Civil) [192 h] | D | 2020 | 820_AB | DJa | CC D | CUT&CTU | CCVS | VB & CC | 820 | 11.26A | TL | C090 | EPIW |
| 8200CCD490 |  | Construction of Roof Slab |  | 13d | 2014-05-19 A | 2014-05-30 A | 8200CCD480 | 100% | 2014-05-19 | 2014-06-04 |  |  |  | Cal 1 | Steel Fixer [104 h]; Carpenter [208 h]; Other Skill Labour (Civil) [208 h] | D | 2020 | 820_AB | DJa | CC D | CUT&CTU | CCVS | VB & CC | 820 | 11.26A | TL | C090 | EPIW |
|  | 9 | **Shaft Box A (Southern Portion)** |  |  |  |  |  |  |  |  |  |  |  |  |  |  |  |  |  |  |  |  |  |  |  |  |  |  |
|  | 1 | **G/L 13 - 15** |  |  |  |  |  |  |  |  |  |  |  |  |  |  |  |  |  |  |  |  |  |  |  |  |  |  |
|  | 2 | **G/L 11 - 13** |  |  |  |  |  |  |  |  |  |  |  |  |  |  |  |  |  |  |  |  |  |  |  |  |  |  |
|  | 10 | **FS1 Works at Shaft Central Portion** |  |  | 2015-06-15 | 2015-08-13 |  |  |  |  |  |  |  |  |  |  |  |  |  |  |  |  |  |  |  |  |  |  |
|  | 1 | **G/L 9 - 11** |  |  | 2015-06-15 | 2015-08-13 |  |  |  |  |  |  |  |  |  |  |  |  |  |  |  |  |  |  |  |  |  |  |
| 8200CCD585 |  | Construction of column & cantilver slab under FS1 (after closure of opening) |  | 20d | 2015-06-15 | 2015-07-09 | 8200CCD700, 8200CCD800 FS+10d |  |  |  | -32d | 0d | start on 2015-06-15 | Cal 1 | Other Skill Labour (Civil) [640 h] | D | 2020 | 820_AB | DJa | CC D | CUT&CTU | CCVS | VB & CC | 820 | 11.26A | TL | C090 | EPIW |
| 8200CCD595 |  | Backfilling & Reinstatement of FS1 |  | 27d | 2015-07-11 | 2015-08-13 | 8200CCD585 |  |  |  | -32d | 0d | start on 2015-05-30 | Cal 1 | Other Skill Labour (Civil) [864 h]; Plant Operator [184 h]; Backhoe [184 h] | D | 2020 | 820_AB | DJa | CC D | CUT&CTU | CCVS | VB & CC | 820 | 11.26A | TL | C090 | EPIW |

Notes:
- 8200CCE660: Basis & Assumptions: The date is come from Antonin & Vincent / (MTR)

| ID | WBS | Activity | Duration | Start | Finish | Predecessors | Complete | Remaining | Planned start | Planned finish | Total float | Free float | Constraint | Calendar | Resources | Responsible by | LEVEL 1 | LEVEL 2 | LEVEL 3 | Cost Centre | Location of Works | Sub-locationof Works | 820_As-built | Classify | SUMMARY | Contracts | Works Area | Phases of Works | Classification of Works |
| --- | --- | --- | --- | --- | --- | --- | --- | --- | --- | --- | --- | --- | --- | --- | --- | --- | --- | --- | --- | --- | --- | --- | --- | --- | --- | --- | --- | --- | --- |
|  | 1 | **Track Level** |  |  |  |  |  |  |  |  |  |  |  |  |  |  |  |  |  |  |  |  |  |  |  |  |  |  |  |
|  | 2 | **Above Track Level** |  |  |  |  |  |  |  |  |  |  |  |  |  |  |  |  |  |  |  |  |  |  |  |  |  |  |  |
|  | 3 | **L2 Level** |  |  |  |  |  |  |  |  |  |  |  |  |  |  |  |  |  |  |  |  |  |  |  |  |  |  |  |
|  | 4 | **L1 Level** |  |  |  |  |  |  |  |  |  |  |  |  |  |  |  |  |  |  |  |  |  |  |  |  |  |  |  |
|  | 5 | **L0 Level** |  |  |  |  |  |  |  |  |  |  |  |  |  |  |  |  |  |  |  |  |  |  |  |  |  |  |  |
|  | 6 | **G/F Level** |  |  |  |  |  |  |  |  |  |  |  |  |  |  |  |  |  |  |  |  |  |  |  |  |  |  |  |
|  | 7 | **U1 Level** |  |  |  |  |  |  |  |  |  |  |  |  |  |  |  |  |  |  |  |  |  |  |  |  |  |  |  |
|  | 8 | **Backfilling, Strut removal & Reinstatement** |  | 2013-08-05 | 2015-07-30 |  |  |  |  |  |  |  |  |  |  |  |  |  |  |  |  |  |  |  |  |  |  |  |  |
|  | 1 | **Backfilling and Strut Removal** |  | 2013-08-05 | 2015-07-23 |  |  |  |  |  |  |  |  |  |  |  |  |  |  |  |  |  |  |  |  |  |  |  |  |
| 8200CCE1432 |  | GL 1 - 8 (works concurrently to VB7 construction) | 88d | 2013-08-05 A | 2014-03-14 A | 8200CCD550 FS-15d | 100% |  | 2013-08-05 | 2013-11-22 |  |  |  | Cal 1 | Other Skill Labour (Civil) [2816 h] | JMB | CC E | VENT BU | RC STRU | E | 2050 | SL | 820_AB |  |  |  |  |  |  |
| 8200CCE1442 |  | GL 15 - 20 | 48d | 2015-04-02 A | 2015-07-11 | 8200CCD600, 8200CCD595 SS+3d, 8200CCE1432 | 35% | 31.2d | 2015-04-02 | 2015-06-08 | -62.2d | 0d | start on 2015-06-03 | Cal 1 | Other Skill Labour (Civil) [1536 h] | JMB | CC E | VENT BU | RC STRU | E | 2050 | SL | 820_AB |  |  |  |  |  |  |
| 8200CCE1452 |  | GL 8 - 15 | 45d | 2015-05-18 A | 2015-07-23 | 8200CCE1442 | 10% | 40.5d | 2015-05-18 | 2015-07-15 | 151.5d | 125.5d |  | Cal 1 | Other Skill Labour (Civil) [1280 h] | JMB | CC E | VENT BU | RC STRU | E | 2050 | SL | 820_AB |  |  |  |  |  |  |
|  | 2 | **Housing Car park and Podium Shop** |  | 2015-07-11 | 2015-07-30 |  |  |  |  |  |  |  |  |  |  |  |  |  |  |  |  |  |  |  |  |  |  |  |  |
| 8200CCE1412 |  | Concrete breaking of last 2m of D-wall (Option) | 15d | 2015-07-11 | 2015-07-30 | 8200CCE1442 |  |  |  |  | -62.2d | 0d |  | Cal 1 | Backhoe [120 h]; Plant Operator [120 h]; Other Skill Labour (Civil) [240 h] | JMB | CC E | VENT BU | RC STRU | E | 2050 | U1 | 820_AB |  |  |  |  |  |  |
|  | 20 | **ABWF works** |  | 2013-09-11 | 2015-08-24 |  |  |  |  |  |  |  |  |  |  |  |  |  |  |  |  |  |  |  |  |  |  |  |  |
|  | 1 | **Degree 1 works** |  | 2013-09-11 | 2014-08-02 |  |  |  |  |  |  |  |  |  |  |  |  |  |  |  |  |  |  |  |  |  |  |  |  |
|  | 3 | **Ref.4C (i) (Deg.1): All Rms within VB7 at Level L2, UL2, L1 and UL1** |  | 2013-09-11 | 2013-12-19 |  |  |  |  |  |  |  |  |  |  |  |  |  |  |  |  |  |  |  |  |  |  |  |  |
| 8200CCE550b |  | Floor Screeding (L2) | 36d | 2013-09-11 A | 2013-12-19 A | 8200CCE550 SS+15d | 100% |  | 2013-09-11 | 2013-10-25 |  |  |  | Cal 3 | Other Skill Labour (Civil) [288 h] | JMB | CC E | VENT BU | ABWF+EM | E | 2050 |  | 820_AB | C1 | VB & CC | 820 | 11.23A | C100 | EPIW |
| 8200CCE550c |  | Floor Screeding (L1) | 25d | 2013-11-01 A | 2013-12-19 A | 8200CCE550b SS+15d | 100% |  | 2013-11-01 | 2013-11-29 |  |  |  | Cal 3 | Other Skill Labour (Civil) [200 h] | JMB | CC E | VENT BU | ABWF+EM | E | 2050 |  | 820_AB | C1 | VB & CC | 820 | 11.23A | C100 | EPIW |
|  | 1 | **Ref.4C (ii) (Deg.1): All Rms within VB7 at Track Level & Above Track Level** |  | 2013-12-02 | 2014-03-01 |  |  |  |  |  |  |  |  |  |  |  |  |  |  |  |  |  |  |  |  |  |  |  |  |
| 8200CCE550 |  | Floor Screeding (Track Level & Above Track Level) | 36d | 2013-12-02 A | 2014-03-01 A | 8200CCD615, 8200CCD227, 8200CCD420 | 100% |  | 2013-12-02 | 2014-01-15 |  |  |  | Cal 3 | Other Skill Labour (Civil) [1152 h] | JMB | CC E | VENT BU | ABWF+EM | E | 2050 |  | 820_AB | C1 | VB & CC | 820 | 11.23A | C100 | EPIW |
| 8200CCE551 |  | Degree 1 works for 4C(ii) | 37d | 2014-01-15 A | 2014-03-01 A | 8200CCE550 | 100% |  |  |  |  |  |  | Cal 3 | Other Skill Labour (Civil) [1184 h] | JMB | CC E | VENT BU | ABWF+EM | E | 2050 |  | 820_AB | C1 | VB & CC | 820 | 11.23A | C100 | EPIW |
|  | 2 | **Ref.4C (iii) (Deg.1): All Rms within VB7 (excluding Ref.4C (i) & 4C (ii))** |  | 2014-04-07 | 2014-08-02 |  |  |  |  |  |  |  |  |  |  |  |  |  |  |  |  |  |  |  |  |  |  |  |  |
| 8200CCE553 |  | Degree 1 works for 4C (iii) | 40d | 2014-04-07 A | 2014-05-31 A | 8200CCE552 SS | 100% |  | 2014-04-07 | 2014-05-28 |  |  |  | Cal 3 | Other Skill Labour (Civil) [1280 h] | JMB | CC E | VENT BU | ABWF+EM | E | 2050 |  | 820_AB | C1 | VB & CC | 820 | 11.23A | C100 | EPIW |
| 8200CCE552 |  | Floor Screeding (G/F) | 12d | 2014-05-02 A | 2014-05-31 A | 8200CCE550c, 8200CCE550c SS+12d, 8200CCD430 FS+5d | 100% |  | 2014-05-02 | 2014-05-16 |  |  |  | Cal 3 | Other Skill Labour (Civil) [384 h] | JMB | CC E | VENT BU | ABWF+EM | E | 2050 |  | 820_AB | C1 | VB & CC | 820 | 11.23A | C100 | EPIW |
| 8200CCE554 |  | Floor Screeding (U1/F) | 12d | 2014-05-27 A | 2014-05-31 A | 8200CCE552 SS+12d | 100% |  | 2014-05-27 | 2014-06-10 |  |  |  | Cal 3 | Other Skill Labour (Civil) [384 h] | JMB | CC E | VENT BU | ABWF+EM | E | 2050 |  | 820_AB | C1 | VB & CC | 820 | 11.23A | C100 | EPIW |
| 8200CCE556 |  | Floor Screeding & Waterproofing (Roof) | 5d | 2014-07-23 A | 2014-08-02 A | 8200CCD490, 8200CCE553 FF | 100% |  | 2014-07-23 | 2014-07-28 |  |  |  | Cal 3 | Other Skill Labour (Civil) [160 h] | JMB | CC E | VENT BU | ABWF+EM | E | 2050 |  | 820_AB | C1 | VB & CC | 820 | 11.23A | C100 | EPIW |

Notes:
- 8200CCE1432: Current Status: Assume: While the TBM2 Excavated into the DT and ~200m away, then start / the wall construction
- 8200CCE1442: Current Status: Assume: While the TBM2 Excavated into the DT and ~200m away, then start / the wall construction
- 8200CCE1452: Current Status: Assume: While the TBM2 Excavated into the DT and ~200m away, then start / the wall construction
- 8200CCE1412: Current Status: Assume: While the TBM2 Excavated into the DT and ~200m away, then start / the wall construction

| ID | WBS | Activity | Type | Duration | Start | Finish | Predecessors | Complete | Remaining | Planned start | Planned finish | Total float | Free float | Constraint | Calendar | Resources | Responsible by | Classify | LEVEL 1 | LEVEL 2 | LEVEL 3 | SUMMARY | Contracts | Cost Centre | Works Area | Location of Works | Phases of Works | Classification of Works | 820_As-built | Sub-locationof Works |
| --- | --- | --- | --- | --- | --- | --- | --- | --- | --- | --- | --- | --- | --- | --- | --- | --- | --- | --- | --- | --- | --- | --- | --- | --- | --- | --- | --- | --- | --- | --- |
|  | 2 | **Degree 2 works** |  |  | 2013-11-04 | 2014-07-23 |  |  |  |  |  |  |  |  |  |  |  |  |  |  |  |  |  |  |  |  |  |  |  |  |
| 8200CCE565 |  | Deg. 2 Works for Level L1, UL2, L1 and UL1 |  | 80d | 2013-11-04 A | 2014-02-22 A | 8200CCE550 SS+6d | 100% |  | 2013-11-04 | 2014-02-11 |  |  |  | Cal 3 | Other Skill Labour (Civil) [3584 h] | JMB | C1 | CC E | VENT BU | ABWF+EM | VB & CC | 820 | E | 11.23A | 2050 | C100 | EPIW | 820_AB |  |
| 8200CCE566 |  | Deg. 2 Works for Track level and Above Track level |  | 67d | 2013-12-31 A | 2014-03-22 A | 8200CCE565 SS+25d | 100% |  |  |  |  |  |  | Cal 3 | Other Skill Labour (Civil) [2144 h] | JMB | C1 | CC E | VENT BU | ABWF+EM | VB & CC | 820 | E | 11.23A | 2050 | C100 | EPIW | 820_AB |  |
| 8200CCE567 |  | Deg. 2 Works for Level L0, Ground Floor, U1, Service level & Roof |  | 87d | 2014-03-24 A | 2014-07-23 A | 8200CCE566 | 100% |  | 2014-03-24 | 2014-07-12 |  |  |  | Cal 3 | Other Skill Labour (Civil) [2784 h] | JMB | C1 | CC E | VENT BU | ABWF+EM | VB & CC | 820 | E | 11.23A | 2050 | C100 | EPIW | 820_AB |  |
|  | 3 | **Degree 3 works** |  |  | 2014-02-24 | 2014-09-18 |  |  |  |  |  |  |  |  |  |  |  |  |  |  |  |  |  |  |  |  |  |  |  |  |
| 8200CCE575 |  | Deg. 3 Works for Level L1, UL2, L1 and UL1 |  | 44d | 2014-02-24 A | 2014-04-17 A | 8200CCE565 | 100% |  |  |  |  |  |  | Cal 3 | Other Skill Labour (Civil) [1408 h] | JMB | C1 | CC E | VENT BU | ABWF+EM | VB & CC | 820 | E | 11.23A | 2050 | C100 |  | 820_AB |  |
| 8200CCE576 |  | Deg. 3 Works for Track level and Above Track level |  | 41d | 2014-03-24 A | 2014-05-17 A | 8200CCE566 | 100% |  |  |  |  |  |  | Cal 3 | Other Skill Labour (Civil) [1312 h] | JMB | C1 | CC E | VENT BU | ABWF+EM | VB & CC | 820 | E | 11.23A | 2050 | C100 |  | 820_AB |  |
| 8200CCE577 |  | Deg. 3 Works for Level L0, Ground Floor, U1, Service level & Roof |  | 47d | 2014-07-14 A | 2014-09-18 A | 8200CCE567 | 100% |  | 2014-07-14 | 2014-09-05 |  |  |  | Cal 3 | Other Skill Labour (Civil) [1536 h] | JMB | C1 | CC E | VENT BU | ABWF+EM | VB & CC | 820 | E | 11.23A | 2050 | C100 |  | 820_AB |  |
|  | 30 | **External Works** |  |  | 2014-05-23 | 2015-08-24 |  |  |  |  |  |  |  |  |  |  |  |  |  |  |  |  |  |  |  |  |  |  |  |  |
| 8200CCE670 |  | Start External works | milestone | 0d | 2014-05-23 A | 2014-05-23 A |  | 100% |  |  |  |  |  | start on 2014-03-01 | Cal 1 |  | JMB |  | CC E | VENT BU | EXT WKS | VB & CC | 820 | E | 11.23A | 2050 |  | EPIW | 820_AB | EXT |
| 8200CCE675 |  | Site Formation Works |  | 60d | 2014-05-23 A | 2015-03-06 A | 8200CCE670 | 100% |  | 2014-05-23 | 2014-08-07 |  |  |  | Cal 1 | Other Skill Labour (Civil) [1920 h]; Plant Operator [960 h]; Backhoe [960 h] | JMB |  | CC E | VENT BU | EXT WKS | VB & CC | 820 | E | 11.23A | 2050 |  | EPIW | 820_AB | EXT |
| 8200CCE685 |  | Roadworks and External Works |  | 60d | 2014-06-13 A | 2015-06-15 | 8200CCE680 SS+30d | 80% | 12d | 2014-06-13 | 2014-08-28 | 227d | 0d |  | Cal 1 | Other Skill Labour (Civil) [1920 h]; Plant Operator [960 h]; Backhoe [480 h]; Roller [60] | JMB |  | CC E | VENT BU | EXT WKS | VB & CC | 820 | E | 11.23A | 2050 |  | EPIW | 820_AB | EXT |
| 8200CCE695 |  | Paving |  | 56.1d | 2014-08-14 A | 2015-08-21 | 8200CCE690 FF | 80% | 11.22d | 2014-08-14 | 2014-10-25 | 227d | 211d |  | Cal 1 | Other Skill Labour (Civil) [1795.2 h]; Plant Operator [400 h]; Backhoe [448.8 h] | JMB |  | CC E | VENT BU | EXT WKS | VB & CC | 820 | E | 11.23A | 2050 |  | EPIW | 820_AB | EXT |
| 8200CCE690 |  | Landscaping |  | 78.05d | 2014-12-15 A | 2015-08-21 | 8200CCE685 FF+52d | 50% | 39.02d | 2014-12-15 | 2015-03-23 | 227d | 0d |  | Cal 1 | Other Skill Labour (Civil) [2497.6 h]; Plant Operator [600 h]; Backhoe [624.4 h] | JMB |  | CC E | VENT BU | EXT WKS | VB & CC | 820 | E | 11.23A | 2050 |  | EPIW | 820_AB | EXT |
| 8200CCE705 |  | Complete Ext. Water Works & Connect to Watermains | milestone | 0d | 2015-07-24 | 2015-07-24 | 8200CCE675 |  |  |  |  | -145d | 0d | finish on 2015-07-24 |  |  | JMB |  | CC E | VENT BU | EXT WKS | 1 | 820 | E | 11.23A | 2050 |  |  | 820_AB | EXT |
| 8200CCE710 |  | Completion Ext. Telephone Drawpits & Ducts | milestone | 0d | 2015-07-24 | 2015-07-24 |  |  |  |  |  | -208d | 0d | finish on 2015-07-24 |  |  | JMB |  | CC E | VENT BU | EXT WKS | 1 | 820 | E | 11.23A | 2050 |  |  | 820_AB | EXT |
| 8200CCE700 |  | Statutory Inspection |  | 24d | 2015-07-25 | 2015-08-24 | 8200CCE705, 8200CCE710 |  |  |  |  | -110d | 0d |  | Cal 1 |  | JMB |  | CC E | VENT BU | EXT WKS | VB & CC | 820 | E | 11.23A | 2050 |  |  | 820_AB | EXT |
|  | 100 | **Submission** |  |  | 2015-01-12 | 2015-04-30 |  |  |  |  |  |  |  |  |  |  |  |  |  |  |  |  |  |  |  |  |  |  |  |  |
|  | 10 | **Completion** |  |  | 2015-01-12 | 2015-04-30 |  |  |  |  |  |  |  |  |  |  |  |  |  |  |  |  |  |  |  |  |  |  |  |  |
| 8200CCE810 |  | Prepare & Submit Draft As-built Drawings |  | 24d | 2015-01-12 A | 2015-03-20 A | 8200CCE700 FS+11d, 8200CCE577 | 100% |  | 2015-01-12 | 2015-02-07 |  |  |  | Cal 3 |  | JMB |  | CC E | Submn-1 | O&M AsB |  |  | E |  |  |  |  | 820_AB |  |
| 8200CCE830 |  | Prepare & Submit Draft O&M Manuals |  | 24d | 2015-01-16 A | 2015-03-20 A | 8200CCE700 FS+15d, 8200CCE575 | 100% |  | 2015-01-16 | 2015-02-12 |  |  |  | Cal 3 |  | JMB |  | CC E | Submn-1 | O&M AsB |  |  | E |  |  |  |  | 820_AB |  |
| 8200CCE820 |  | Prepare & Submit As-built Drawings |  | 48d | 2015-03-02 A | 2015-04-30 A | 8200CCE575, 8200CCE810 | 100% |  |  |  |  |  |  | Cal 3 |  | JMB |  | CC E | Submn-1 | O&M AsB |  |  | E |  |  |  |  | 820_AB |  |
| 8200CCE840 |  | Prepare & Submit O&M Manuals |  | 48d | 2015-03-02 A | 2015-04-30 A | 8200CCE830 | 100% |  |  |  |  |  |  | Cal 3 |  | JMB |  | CC E | Submn-1 | O&M AsB |  |  | E |  |  |  |  | 820_AB |  |
|  | CF | **Cost Centre F - Obstruction removal & Reinstate Works** |  |  | 2010-05-12 | 2015-08-11 |  |  |  |  |  |  |  |  |  |  |  |  |  |  |  |  |  |  |  |  |  |  |  |  |
|  | 10 | **IPS Milestones** |  |  | 2010-11-28 | 2015-05-10 |  |  |  |  |  |  |  |  |  |  |  |  |  |  |  |  |  |  |  |  |  |  |  |  |
|  | 10 | **General** |  |  | 2010-11-28 | 2015-05-10 |  |  |  |  |  |  |  |  |  |  |  |  |  |  |  |  |  |  |  |  |  |  |  |  |
| 8200MSF01 |  | Obtain SLG Approval for Confirm Old CheungShaWan Cargo Pier Pile Locat'n | milestone | 0d | 2010-11-28 A | 2010-11-28 A | 8200TMF430 | 100% |  | 2011-02-28 | 2011-02-28 |  |  | finish on or after 2010-11-28 |  |  | INg |  | CC F | MILESTO | o | A | 820 | F |  |  |  |  |  |  |
| 8200MSF02 |  | Complete Removal of 3 nos. Existing Piles | milestone | 0d | 2011-07-31 A | 2011-07-31 A | 8200CCF662, 8200CCF682a, 8200CCF658 | 100% |  | 2011-09-07 | 2011-09-07 |  |  | finish on or after 2011-08-02 |  |  | INg |  | CC F | MILESTO | o | A | 820 | F |  |  |  |  |  |  |
| 8200MSF03 |  | Complete 10% Mini-piles for Lai Chi Kok Overpass | milestone | 0d | 2011-08-28 A | 2011-08-28 A | 8200CCF372a SF+21d | 100% |  | 2011-08-31 | 2011-08-31 |  |  | finish on or after 2011-08-28 |  |  | INg |  | CC F | MILESTO | o | A | 820 | F |  |  |  |  |  |  |
| 8200MSF04 |  | Complete Backfilling Works for Demolished FMO Maket Pier B | milestone | 0d | 2011-11-20 A | 2011-11-20 A | 8200CCF776, 8200CCF784 | 100% |  | 2012-01-15 | 2012-01-15 |  |  | finish on or after 2011-11-27 |  |  | INg |  | CC F | MILESTO | o | A | 820 | F |  |  |  |  |  |  |
| 8200MSF06 |  | Removal of Obstruction Piles for Old Cheung Sha Wan Cargo Pier(DT) | milestone | 0d | 2012-02-05 A | 2012-02-05 A | 8200CCF894a, 8200CCF892, 8200CCF662, 8200CCF666, 8200CCF682a, 8200CCF657, 8200CCF658 | 100% |  | 2012-08-31 | 2012-08-31 |  |  | finish on or after 2012-02-05 |  |  | INg |  | CC F | MILESTO | o | A | 820 | F |  |  |  |  |  |  |
| 8200MSF05 |  | Removal of Obstruction Piles for Demolished Sham Shui Po Pier (DT) | milestone | 0d | 2012-03-27 A | 2012-03-27 A | 8200CCF830d7, 8200CCF830d6 | 100% |  | 2012-11-13 | 2012-11-13 |  |  | finish on or after 2012-04-29 |  |  | INg |  | CC F | MILESTO | o | A | 820 | F |  |  |  |  |  |  |
| 8200MSF07 |  | Complete Reinstatement of TWL Sump | milestone | 0d | 2012-05-23 A | 2012-05-23 A | 8200CCF305 | 100% |  | 2013-01-15 | 2013-01-15 |  |  | finish on or after 2012-05-27 |  |  | INg |  | CC F | MILESTO | o | A | 820 | F |  |  |  |  |  |  |
| 8200MSF08 |  | Complete U/G Services & Reinstatement for Lai Chi Kok Overpass | milestone | 0d | 2013-09-29 A | 2013-09-29 A | 8200CCF600 | 100% |  |  |  |  |  | finish on or after 2013-09-29 |  |  | INg |  | CC F | MILESTO | o | A | 820 | F |  |  |  |  |  |  |
| 8200MSF09 |  | Complete All Works | milestone | 0d | 2015-05-10 A | 2015-05-10 A | 8200CCF786, 8200CCF907, 8200CCF860, 8200CCF732, 8200CCF668, 8200CCF305, 8200CCF468, 8200CCF600, 8200CCF458, 8200CCF698 | 100% |  |  |  |  |  | finish on or after 2015-05-10 |  |  | INg |  | CC F | MILESTO | o | A | 820 | F |  |  |  |  |  |  |

Notes:
- 8200MSF03: Review Comments: Kenneth's comment: remove the Works Area description / (12Aug11)

| ID | WBS | Activity | Type | Duration | Start | Finish | Predecessors | Complete | Planned start | Planned finish | Calendar | Responsible by | LEVEL 1 | LEVEL 2 | LEVEL 3 | SUMMARY | Responsible (bm makes Global) | Contracts | Cost Centre | Phases of Works | 820_As-built |
| --- | --- | --- | --- | --- | --- | --- | --- | --- | --- | --- | --- | --- | --- | --- | --- | --- | --- | --- | --- | --- | --- |
|  | 20 | **F1 Complete TWL New Sump Provision** |  |  | 2010-05-25 | 2014-07-24 |  |  |  |  |  |  |  |  |  |  |  |  |  |  |  |
|  | 10 | **Method Statement Submission and Approval** |  |  | 2011-02-22 | 2011-06-27 |  |  |  |  |  |  |  |  |  |  |  |  |  |  |  |
| 8200MTF100 |  | MS Preparation for TWL Sump Pit Modification |  | 150d | 2011-02-22 A | 2011-03-24 A |  | 100% | 2011-05-16 | 2011-10-12 |  | MiC | CC F | TWL SUM | MS PREP | 1 | ARo | 820 | F | C010 | 820_AB |
| 8200MTF110 |  | MS Submission to MTR | milestone | 0d | 2011-03-24 A | 2011-03-24 A | 8200MTF100 | 100% | 2011-08-31 | 2011-08-31 | Cal 3 | MiC | CC F | TWL SUM | MS PREP | 1 | ARo | 820 | F | C010 | 820_AB |
| 8200MTF120 |  | MS Comment by MTR |  | 28d | 2011-03-25 A | 2011-04-29 A | 8200MTF110 | 100% | 2011-08-31 | 2011-09-27 |  | MiC | CC F | TWL SUM | MS PREP | 1 | ARo | 820 | F | C010 | 820_AB |
| 8200MTF130 |  | MS Re-submission Preparation |  | 12d | 2011-04-30 A | 2011-06-07 A | 8200MTF120 | 100% | 2011-08-31 | 2011-09-14 | Cal 3 | MiC | CC F | TWL SUM | MS PREP | 1 | ARo | 820 | F | C010 | 820_AB |
| 8200MTF140 |  | MS Comment & Approval by MTR |  | 28d | 2011-06-08 A | 2011-06-27 A | 8200MTF130, 8200MTF130 FF | 100% | 2011-08-31 | 2011-09-27 |  | MiC | CC F | TWL SUM | MS PREP | 1 | ARo | 820 | F | C010 | 820_AB |
| 8200MTF150 |  | Issue for Construction | milestone | 0d | 2011-06-27 A | 2011-06-27 A | 8200DSF240, 8200DSF170, 8200MTF140, 8200DSF400, 8200DSF190 | 100% | 2011-11-25 | 2011-11-25 | Cal 3 | MiC | CC F | TWL SUM | MS PREP | 1 | ARo | 820 | F | C010 | 820_AB |
|  | 20 | **Design Submission & Approval** |  |  | 2010-06-14 | 2011-08-29 |  |  |  |  |  |  |  |  |  |  |  |  |  |  |  |
| 8200DSF160 |  | AIP Submission of TWL Protection Works |  | 23d | 2010-06-14 A | 2010-07-12 A | 8200KD1020 FS+24d, 8200DSF150b | 100% | 2011-05-25 | 2011-06-21 | Cal 3 | KKw | CC F | TWL SUM | DES SUB | 1 |  | 820 | F | C010 | 820_AB |
| 8200DSF170 |  | MTR's Comment for AIP of TWL Protection Works |  | 14d | 2010-07-13 A | 2010-07-26 A | 8200DSF160 | 100% | 2011-02-28 | 2011-03-13 |  | KKw | CC F | TWL SUM | DES SUB | 1 |  | 820 | F | C010 | 820_AB |
| 8200DSF405a |  | EDOC (TWL) Submission of Temp.Sump Modification |  | 26d | 2010-10-16 A | 2010-11-16 A | 8200KD1020 FS+24d | 100% | 2011-06-08 | 2011-07-08 | Cal 3 | KKw | CC F | TWL SUM | DES SUB | 1 |  | 820 | F | C010 | 820_AB |
| 8200DSF360 |  | DDA Submission of TWL Protection Works |  | 24d | 2010-11-10 A | 2011-05-20 A | 8200DSF240, 8200DSF190 | 100% | 2011-08-31 | 2011-09-28 | Cal 3 | KKw | CC F | TWL SUM | DES SUB | 1 |  | 820 | F | C010 | 820_AB |
| 8200DSF405b |  | MTR's Comment for EDOC (TWL)Temp.Sump Modification |  | 24d | 2010-11-17 A | 2010-12-10 A | 8200DSF405a | 100% | 2011-02-28 | 2011-03-23 |  | KKw | CC F | TWL SUM | DES SUB | 1 |  | 820 | F | C010 | 820_AB |
| 8200DSF400 |  | MTR's Approval for DDA of TWL Protection Works |  | 28d | 2010-12-11 A | 2011-06-09 A | 8200DSF360 | 100% | 2011-08-31 | 2011-09-27 |  | KKw | CC F | TWL SUM | DES SUB | 1 |  | 820 | F | C010 | 820_AB |
| 8200DSF410a |  | EDOC (TWL) Re-submission of Temp.Sump Modification |  | 57d | 2010-12-11 A | 2011-02-22 A | 8200DSF405b | 100% | 2011-02-28 | 2011-05-11 | Cal 3 | KKw | CC F | TWL SUM | DES SUB | 1 |  | 820 | F | C010 | 820_AB |
| 8200DSF155a |  | DDA Submission of Temp.Shaft Design |  | 22d | 2010-12-28 A | 2011-07-26 A |  | 100% | 2011-06-08 | 2011-07-06 | Cal 1 | KKw | CC F | TWL SUM | DES SUB | 1 |  | 820 | F | C010 | 820_AB |
| 8200DSF140 |  | AIP Submission of Temp.& Permanent Sump Modification |  | 23d | 2011-01-26 A | 2011-02-16 A | 8200KD1020 FS+24d | 100% | 2011-06-08 | 2011-07-07 | Cal 1 | KKw | CC F | TWL SUM | DES SUB | 1 |  | 820 | F | C010 | 820_AB |
| 8200DSF145 |  | MTR's Comment for AIP of Temp.& Permanent Sump Modification |  | 12d | 2011-02-17 A | 2011-04-19 A | 8200DSF140 | 100% | 2011-02-28 | 2011-03-12 | Cal 1 | KKw | CC F | TWL SUM | DES SUB | 1 |  | 820 | F | C010 | 820_AB |
| 8200DSF410b |  | MTR's Comment & Approval for EDOC of Temp.Work Design for Sump Modification |  | 140d | 2011-02-23 A | 2011-04-15 A | 8200DSF410a | 100% | 2011-02-28 | 2011-07-17 |  | KKw | CC F | TWL SUM | DES SUB | 1 |  | 820 | F | C010 | 820_AB |
| 8200DSF180 |  | 1st AIP Re-submission of TWL Protection Works |  | 26d | 2011-04-16 A | 2011-05-11 A | 8200DSF170 | 100% | 2011-02-28 | 2011-03-29 | Cal 3 | KKw | CC F | TWL SUM | DES SUB | 1 |  | 820 | F | C010 | 820_AB |
| 8200DSF150a |  | AIP Re-submission of Temp.&Permanent Sump Modification |  | 27d | 2011-04-20 A | 2011-07-05 A | 8200DSF145 | 100% | 2011-02-28 | 2011-03-30 | Cal 3 | KKw | CC F | TWL SUM | DES SUB | 1 |  | 820 | F | C010 | 820_AB |
| 8200DSF420a |  | EDOC (TWL) Submission of Protection Works |  | 26d | 2011-04-30 A | 2011-05-31 A | 8200KD1020 FS+24d | 100% | 2011-06-08 | 2011-07-08 | Cal 3 | KKw | CC F | TWL SUM | DES SUB | 1 |  | 820 | F | C010 | 820_AB |
| 8200DSF190 |  | MTR's Comment & Approval for 1st AIP of TWL Protection Works |  | 23d | 2011-05-12 A | 2011-05-27 A | 8200DSF180 | 100% | 2011-02-28 | 2011-03-22 |  | KKw | CC F | TWL SUM | DES SUB | 1 |  | 820 | F | C010 | 820_AB |
| 8200DSF230 |  | 2nd AIP Re-submission of TWL Protection Works |  | 115d | 2011-05-28 A | 2011-07-28 A | 8200DSF190 | 100% | 2011-02-28 | 2011-07-20 | Cal 3 | KKw | CC F | TWL SUM | DES SUB | 1 |  | 820 | F | C010 | 820_AB |
| 8200DSF420b |  | MTR's Comment for EDOC (TWL) Protection Works |  | 209d | 2011-06-01 A | 2011-07-11 A | 8200DSF420a | 100% | 2011-02-28 | 2011-09-24 |  | KKw | CC F | TWL SUM | DES SUB | 1 |  | 820 | F | C010 | 820_AB |
| 8200DSF155d |  | MTR's Comment & Approval for DDA of Permanent Sump Modification |  | 23d | 2011-06-23 A | 2011-07-21 A | 8200DSF155c | 100% | 2011-09-29 | 2011-10-21 |  | KKw | CC F | TWL SUM | DES SUB | 1 |  | 820 | F | C010 | 820_AB |
| 8200DSF150b |  | MTR's Comment & Approval for AIP of Temp.Work Design for Sump Modification |  | 140d | 2011-07-06 A | 2011-08-29 A | 8200DSF150a | 100% | 2011-02-28 | 2011-07-17 |  | KKw | CC F | TWL SUM | DES SUB | 1 |  | 820 | F | C010 | 820_AB |
| 8200DSF420c |  | EDOC (TWL) Re-submission of Protection Works |  | 25d | 2011-07-12 A | 2011-07-15 A | 8200DSF420b | 100% | 2011-08-31 | 2011-09-29 | Cal 3 | KKw | CC F | TWL SUM | DES SUB | 1 |  | 820 | F | C010 | 820_AB |
| 8200DSF420d |  | MTR's Comment & Approval for EDOC of Protection Works |  | 24d | 2011-07-16 A | 2011-08-02 A | 8200DSF420c | 100% | 2011-08-31 | 2011-09-23 |  | KKw | CC F | TWL SUM | DES SUB | 1 |  | 820 | F | C010 | 820_AB |
| 8200DSF155b |  | MTR's Comment & Approval for DDA of Temp.Shaft Design |  | 155d | 2011-07-27 A | 2011-08-12 A | 8200DSF150b FF, 8200DSF155a | 100% | 2011-02-28 | 2011-08-01 |  | KKw | CC F | TWL SUM | DES SUB | 1 |  | 820 | F | C010 | 820_AB |
| 8200DSF240 |  | MTR's Approval for 2nd AIP of TWL Protection Works |  | 28d | 2011-07-29 A | 2011-08-29 A | 8200DSF230 | 100% | 2011-09-01 | 2011-09-28 |  | KKw | CC F | TWL SUM | DES SUB | 1 |  | 820 | F | C010 | 820_AB |
| 8200DSF155c |  | DDA Submission of Permanent Sump Modification |  | 24d | 2011-08-13 A | 2011-08-15 A | 8200DSF155b | 100% | 2011-08-31 | 2011-09-28 | Cal 3 | KKw | CC F | TWL SUM | DES SUB | 1 |  | 820 | F | C010 | 820_AB |

| ID | WBS | Activity | Type | Duration | Start | Finish | Predecessors | Complete | Planned start | Planned finish | Constraint | Calendar | Resources | Responsible by | LEVEL 1 | LEVEL 2 | LEVEL 3 | SUMMARY | Contracts | Cost Centre | Works Area | Phases of Works | 820_As-built | Priority A | Sum1 | Classification of Works | Production Rate | QUANTITY |
| --- | --- | --- | --- | --- | --- | --- | --- | --- | --- | --- | --- | --- | --- | --- | --- | --- | --- | --- | --- | --- | --- | --- | --- | --- | --- | --- | --- | --- |
|  | 30 | **Circular Shaft Construction** |  |  | 2010-05-25 | 2011-12-23 |  |  |  |  |  |  |  |  |  |  |  |  |  |  |  |  |  |  |  |  |  |  |
| 8200CCF105 |  | Site Possession (Area 10.3) | milestone | 0d | 2010-05-25 A | 2010-05-25 A | 8200AC1040, 8200KD1020, 8200AC1020, 8200AC1030 | 100% | 2011-03-28 | 2011-03-28 |  | Cal 1 |  | AAu | CC F | TWL SUM | CIRSHAF | 1 | 820 | F | 10.3 | C020 | 820_AB |  |  |  |  |  |
| 8200CCF110 |  | Set-up Plan & Hoarding Plan Submn & Approval |  | 36d | 2010-07-21 A | 2010-08-18 A | 8200CCF105 | 100% | 2011-02-28 | 2011-04-12 |  | Cal 1 |  | AAu | CC F | TWL SUM | CIRSHAF | 1 | 820 | F | 10.3 | C020 | 820_AB |  |  |  |  |  |
| 8200sum450 |  | Circular Shaft Const'n & Install Temp.Pumping System | level of effort | 521d | 2010-07-21 A | 2011-12-23 A | 8200CCF110 SS | 100% | 2011-08-15 | 2013-01-16 |  |  |  |  |  |  |  |  |  |  |  |  | 820_AB | 4 | S1 |  |  |  |
| 8200CCF115 |  | Site Setup & Hoarding Erection |  | 20d | 2010-08-19 A | 2010-09-14 A | 8200CCF105, 8200CCF110 | 100% | 2011-02-28 | 2011-03-22 |  | Cal 1 | Other Skill Labour (Civil) [1152 h]; Mobile Crane [24 h]; Plant Operator [192 h] | AAu | CC F | TWL SUM | CIRSHAF | 1 | 820 | F | 10.3 | C020 | 820_AB |  |  |  |  |  |
| 8200CCF120 |  | Install Instruments/Monitoring Stations |  | 18d | 2010-09-15 A | 2010-10-07 A | 8200CCF115 | 100% | 2011-02-28 | 2011-03-19 |  | Cal 1 | Other Skill Labour (Civil) [864 h] | AAu | CC F | TWL SUM | CIRSHAF | 1 | 820 | F | 10.3 | C020 | 820_AB |  |  |  |  |  |
| 8200CCF125 |  | Trial Trench to Locate Exist'g 400kV & StormDrain |  | 18d | 2010-09-27 A | 2010-10-19 A | 8200CCF120 | 100% | 2011-03-21 | 2011-04-12 |  | Cal 1 | Other Skill Labour (Civil) [864 h]; Plant Operator [144 h]; Backhoe [18 h] | AAu | CC F | TWL SUM | CIRSHAF | 1 | 820 | F | 10.3 | C020 | 820_AB |  |  |  |  |  |
| 8200CCF100 |  | Area 37.3 Tree Transplant by 801 Designated Contrator | milestone | 0d | 2010-10-11 A | 2010-10-11 A |  | 100% | 2011-02-28 | 2011-02-28 | finish on or after 2010-10-11 | Cal 1 |  | AAu | CC F | TWL SUM | CIRSHAF | 1 | 820 | F | 10.3 | C020 | 820_AB |  |  |  |  |  |
| 8200CCF130 |  | Protection for 400kV & 600 dia.Storm Drain |  | 26d | 2011-03-11 A | 2011-04-12 A | 8200DSF170, 8200CCF125 FS-12d | 100% | 2011-07-19 | 2011-08-20 |  | Cal 1 | Other Skill Labour (Civil) [1248 h]; Plant Operator [208 h]; Backhoe [26 h] | AAu | CC F | TWL SUM | CIRSHAF | 1 | 820 | F | 10.3 | C020 | 820_AB |  |  |  |  |  |
| 8200CCF140a |  | Drilling for Jet Grouting |  | 63d | 2011-04-16 A | 2011-07-14 A | 8200CCF130, 8200CCF100 | 100% | 2011-08-08 | 2011-10-27 |  | Cal 1 | Plant Operator [504 h]; Drilling Rig [63 h]; Other Skill Labour (Civil) [3024 h] | AAu | CC F | TWL SUM | CIRSHAF | 1 | 820 | F | 10.3 | C050 | 820_AB |  |  | RRIW |  |  |
| 8200CCF140a10 |  | Ground Treatment by Jet Grout |  | 24d | 2011-07-15 A | 2011-08-13 A | 8200DSF410b, 8200CCF140a FS-1d, 8200CCF100 | 100% | 2011-08-31 | 2011-09-30 |  | Cal 1 | Other Skill Labour (Civil) [1152 h]; Plant Operator [192 h]; Drilling Rig [24 h] | AAu | CC F | TWL SUM | CIRSHAF | 1 | 820 | F | 10.3 | C050 | 820_AB |  |  | RRIW |  |  |
| 8200CCF140a20 |  | Drilling for Fissure Grout |  | 23d | 2011-08-15 A | 2011-09-14 A | 8200DSF410b, 8200CCF130, 8200CCF100, 8200DSF155b, 8200CCF140a10 FS-1d | 100% | 2011-08-31 | 2011-09-29 |  | Cal 1 | Other Skill Labour (Civil) [1104 h]; Drilling Rig [23 h]; Plant Operator [184 h] | AAu | CC F | TWL SUM | CIRSHAF | 1 | 820 | F | 10.3 | C050 | 820_AB |  |  | RRIW |  |  |
| 8200CCF140a30 |  | Ground Treatment by Fissure Grout |  | 22d | 2011-09-15 A | 2011-10-14 A | 8200CCF130, 8200DSF155b, 8200CCF140a20 FS-1d, 8200DSF410b, 8200CCF100 | 100% | 2011-08-31 | 2011-09-28 |  | Cal 1 | Other Skill Labour (Civil) [1056 h]; Plant Operator [176 h]; Drilling Rig [22 h] | AAu | CC F | TWL SUM | CIRSHAF | 1 | 820 | F | 10.3 | C050 | 820_AB |  |  | RRIW |  |  |
| 8200CCF140a40 |  | Bored Pile |  | 27d | 2011-10-15 A | 2011-11-16 A | 8200CCF140a30 | 100% | 2012-01-16 | 2012-02-18 |  | Cal 1 | Other Skill Labour (Civil) [1296 h]; Plant Operator [216 h]; Bored Pile Rig [27 h]; Excavation - Soft [166 m3]; Mobile Crane [27 h] | AAu | CC F | TWL SUM | CIRSHAF | 1 | 820 | F | 10.3 | C050 | 820_AB |  |  | RRIW | 6m/d | 8.3m2,30-5-5=20m,+6d Setup |
| 8200CCF145 |  | Install Internal Casing |  | 8d | 2011-11-17 A | 2011-11-26 A | 8200CCF140a10, 8200CCF140a20, 8200DSF155d, 8200CCF140a, 8200MTF150, 8200CCF140a30, 8200CCF140a40, 8200DSF420d | 100% | 2012-01-16 | 2012-01-27 |  | Cal 1 | Excavation - Soft [166 m3]; Other Skill Labour (Civil) [768 h]; Plant Operator [256 h]; Mobile Crane [16 h]; Bored Pile Rig [16 h] | AAu | CC F | TWL SUM | CIRSHAF | 1 | 820 | F | 10.3 | C050 | 820_AB |  |  | RRIW | 6m/d | 8.3m2,30-5-5=20m,+6d Setup |
| 8200CCF150 |  | Concrete Water Plug |  | 2d | 2011-11-28 A | 2011-11-29 A | 8200CCF145 | 100% | 2012-01-16 | 2012-01-17 |  | Cal 1 | Other Skill Labour (Civil) [96 h] | AAu | CC F | TWL SUM | CIRSHAF | 1 | 820 | F | 10.3 | C050 | 820_AB |  |  | RRIW | 1m/d | say 5m,+3d Setup |
| 8200CCF170 |  | Grouting & Extract External Casing |  | 2d | 2011-11-30 A | 2011-12-02 A | 8200CCF150 | 100% | 2012-01-16 | 2012-01-17 |  | Cal 1 | Concretor [144 h]; Other Skill Labour (Civil) [864 h]; Carpenter [864 h]; Steel Fixer [864 h] | AAu | CC F | TWL SUM | CIRSHAF | 1 | 820 | F | 10.3 | C050 | 820_AB |  |  | RRIW |  |  |
| 8200CCF180 |  | Dewatering/ Pumping System |  | 5d | 2011-12-03 A | 2011-12-09 A | 8200CCF170 | 100% | 2012-01-16 | 2012-01-20 |  | Cal 1 |  | AAu | CC F | TWL SUM | CIRSHAF |  |  | F |  |  | 820_AB |  |  |  |  |  |
| 8200CCF190 |  | Ventilation, Lighting System |  | 5d | 2011-12-10 A | 2011-12-16 A | 8200CCF180 | 100% | 2012-01-16 | 2012-01-20 |  | Cal 1 |  | AAu | CC F | TWL SUM | CIRSHAF |  |  | F |  |  | 820_AB |  |  |  |  |  |
| 8200CCF220 |  | Setup Access Shaft |  | 5d | 2011-12-17 A | 2011-12-23 A | 8200sum450 FF, 8200CCF190 | 100% | 2012-01-16 | 2012-01-20 |  | Cal 1 |  | AAu | CC F | TWL SUM | CIRSHAF |  |  | F |  |  | 820_AB |  |  |  |  |  |
|  | 40 | **Adit Construction** |  |  | 2011-12-24 | 2012-02-29 |  |  |  |  |  |  |  |  |  |  |  |  |  |  |  |  |  |  |  |  |  |  |
| 8200CCF200 |  | Post Form Adit Opening |  | 5d | 2011-12-24 A | 2011-12-30 A | 8200CCF220 | 100% | 2012-01-16 | 2012-01-20 |  | Cal 1 | Other Skill Labour (Civil) [288 h]; Plant Operator [144 h]; Backhoe [12 h]; Mobile Crane [6 h] | AAu | CC F | TWL SUM | ADIT | 1 | 820 | F | 10.3U | C050 | 820_AB |  |  | RRIW |  |  |
| 8200CCF205 |  | Adit Excavation |  | 36d | 2011-12-31 A | 2012-02-22 A | 8200CCF200 | 100% | 2012-01-16 | 2012-02-29 |  | Cal 1 | Excavation - Soft [24 m3]; Other Skill Labour (Civil) [576 h]; Plant Operator [288 h]; Backhoe [36 h] | AAu | CC F | TWL SUM | ADIT | 1 | 820 | F | 10.3U | C050 | 820_AB |  |  | RRIW |  | 11.8m2x8.5 |
| 8200CCF215 |  | Lining for Adit |  | 6d | 2012-02-23 A | 2012-02-29 A | 8200CCF205 | 100% | 2012-10-03 | 2012-10-09 |  | Cal 1 |  | AAu | CC F | TWL SUM | ADIT |  |  | F |  |  | 820_AB |  |  |  |  |  |

| ID | WBS | Activity | Type | Duration | Start | Finish | Predecessors | Complete | Planned start | Planned finish | Calendar | Resources | Responsible by | LEVEL 1 | LEVEL 2 | LEVEL 3 | SUMMARY | Contracts | Cost Centre | Works Area | Classification of Works | 820_As-built | Priority A | TBM DT s | TBM DT f | Sum1 | TBM UT f | TBM UT s | Production Rate | QUANTITY |
| --- | --- | --- | --- | --- | --- | --- | --- | --- | --- | --- | --- | --- | --- | --- | --- | --- | --- | --- | --- | --- | --- | --- | --- | --- | --- | --- | --- | --- | --- | --- |
|  | 1 | **Construction of Pipe Canopy** |  |  | 2012-03-01 | 2012-05-16 |  |  |  |  |  |  |  |  |  |  |  |  |  |  |  |  |  |  |  |  |  |  |  |  |
| 8200CCF250 |  | Concrete Coring & Saw Cut for Sump Pit Wall |  | 6d | 2012-03-01 A | 2012-03-08 A | 8200CCF215 | 100% | 2012-10-10 | 2012-10-16 | Cal 1 | Other Skill Labour (Civil) [144 h]; Plant Operator [48 h]; Backhoe [3 h]; Mobile Crane [3 h] | AAu | CC F | TWL SUM | EX SUMP | 1 | 820 | F | 10.3U | RRIW | 820_AB |  |  |  |  |  |  |  |  |
| 8200sum465 |  | Pipe Canopy Construction | level of effort | 73d | 2012-03-01 A | 2012-05-16 A | 8200CCF250 SS | 100% | 2012-10-10 | 2012-12-21 |  |  |  |  |  |  |  |  |  |  |  | 820_AB | 4 | 2012-07-13 | 2012-07-13 | S1 | 2013-07-24 | 2013-07-24 |  |  |
| 8200CCF260 |  | Enlarge Sump Pit Opening |  | 3d | 2012-03-03 A | 2012-03-06 A | 8200CCF255 | 100% | 2012-10-19 | 2012-10-22 | Cal 1 | Other Skill Labour (Civil) [288 h]; Plant Operator [96 h]; Backhoe [6 h]; Mobile Crane [6 h] | AAu | CC F | TWL SUM | EX SUMP | 1 | 820 | F | 10.3U | RRIW | 820_AB |  |  |  |  |  |  |  |  |
| 8200CCF265 |  | Erect Temporary Props |  | 6d | 2012-03-07 A | 2012-03-13 A | 8200CCF260 | 100% | 2012-10-24 | 2012-10-30 | Cal 1 | Plant Operator [24 h]; Mobile Crane [3 h]; Other Skill Labour (Civil) [144 h] | AAu | CC F | TWL SUM | EX SUMP | 1 | 820 | F | 10.3U | RRIW | 820_AB |  |  |  |  |  |  |  |  |
| 8200CCF255 |  | Erection Temp. Props Support |  | 2d | 2012-03-09 A | 2012-03-12 A | 8200CCF250 | 100% | 2012-10-17 | 2012-10-18 | Cal 1 | Other Skill Labour (Civil) [144 h]; Plant Operator [24 h]; Mobile Crane [3 h] | AAu | CC F | TWL SUM | EX SUMP | 1 | 820 | F | 10.3U | RRIW | 820_AB |  |  |  |  |  |  |  |  |
| 8200CCF270 |  | Setup Pumping System |  | 6d | 2012-03-14 A | 2012-03-20 A | 8200CCF265 | 100% | 2012-10-31 | 2012-11-06 | Cal 1 | Other Skill Labour (Civil) [1488 h]; Plant Operator [248 h]; Drilling Rig [31 h] | AAu | CC F | TWL SUM | EX SUMP | 1 | 820 | F | 10.3U | RRIW | 820_AB |  |  |  |  |  |  | 1Pile/d +6d Setup | 13(T)+12(B) |
| 8200CCF275 |  | Remove Existing Pumping System |  | 2d | 2012-03-21 A | 2012-03-22 A | 8200CCF270 | 100% | 2012-11-07 | 2012-11-08 | Cal 1 | Other Skill Labour (Civil) [288 h]; Plant Operator [48 h]; Mobile Crane [6 h] | AAu | CC F | TWL SUM | EX SUMP | 1 | 820 | F | 10.3U | RRIW | 820_AB |  |  |  |  |  |  |  |  |
| 8200CCF280 |  | Mass Concrete for Drilling rig Platform |  | 3d | 2012-03-23 A | 2012-03-26 A | 8200CCF275 | 100% | 2012-11-09 | 2012-11-12 | Cal 1 | Other Skill Labour (Civil) [864 h]; Plant Operator [144 h]; Mobile Crane [18 h]; Concretor [48 h]; Steel Fixer [432 h] | AAu | CC F | TWL SUM | EX SUMP | 1 | 820 | F | 10.3U | RRIW | 820_AB |  |  |  |  |  |  |  |  |
| 8200CCF285 |  | Delivery and Setup Drillilng Rig |  | 6d | 2012-03-27 A | 2012-04-14 A | 8200CCF280 | 100% | 2012-11-13 | 2012-11-19 | Cal 1 | Other Skill Labour (Civil) [1152 h] | AAu | CC F | TWL SUM | EX SUMP | 1 | 820 | F | 10.3U | RRIW | 820_AB |  |  |  |  |  |  |  |  |
| 8200CCF288 |  | Construction of Pipe Canopy |  | 28d | 2012-04-30 A | 2012-05-16 A | 8200CCF285, 8200sum465 FF | 100% | 2012-11-20 | 2012-12-21 | Cal 1 |  | AAu | CC F | TWL SUM | EX SUMP |  |  | F |  |  | 820_AB |  |  |  |  |  |  |  |  |
|  | 50 | **Modification of Existing Sump** |  |  | 2012-04-17 | 2012-05-23 |  |  |  |  |  |  |  |  |  |  |  |  |  |  |  |  |  |  |  |  |  |  |  |  |
| 8200CCF290 |  | Strengthen Adit & Sump Opening Connection |  | 5d | 2012-04-17 A | 2012-04-21 A | 8200CCF288 | 100% | 2012-12-22 | 2012-12-29 | Cal 1 | Other Skill Labour (Civil) [384 h] | AAu | CC F | TWL SUM | EX SUMP | 1 | 820 | F | 10.3U | RRIW | 820_AB |  |  |  |  |  |  |  |  |
| 8200sum470 |  | Modification of Existing Sump | level of effort | 25d | 2012-04-17 A | 2012-05-23 A | 8200CCF290 SS | 100% | 2012-12-22 | 2013-01-15 |  |  |  |  |  |  |  |  |  |  |  | 820_AB | 4 | 2012-07-13 | 2012-07-13 | S1 | 2013-07-24 | 2013-07-24 |  |  |
| 8200CCF295 |  | Install Prop above Slab Cut Line |  | 2d | 2012-04-23 A | 2012-04-25 A | 8200CCF290 SS | 100% | 2012-12-22 | 2012-12-24 | Cal 1 | Other Skill Labour (Civil) [144 h]; Plant Operator [48 h]; Backhoe [3 h]; Mobile Crane [3 h] | AAu | CC F | TWL SUM | EX SUMP | 1 | 820 | F | 10.3U | RRIW | 820_AB |  |  |  |  |  |  |  | Shaft 97m3;Adit 24m3 |
| 8200CCF300 |  | Saw Cut Pit Wall above Base Slab |  | 5d | 2012-05-03 A | 2012-05-08 A | 8200CCF295 | 100% | 2012-12-27 | 2013-01-02 | Cal 1 | Plant Operator [144 h]; Backhoe [6 h]; Mobile Crane [6 h]; Bored Pile Rig [6 h]; Other Skill Labour (Civil) [288 h] | AAu | CC F | TWL SUM | EX SUMP | 1 | 820 | F | 10.3 | RRIW | 820_AB |  |  |  |  |  |  |  | 105m3 |
| 8200CCF305 |  | RC Base Slab Construction |  | 11d | 2012-05-17 A | 2012-05-23 A | 8200CCF300, 8200sum470 FF | 100% | 2013-01-03 | 2013-01-15 | Cal 1 | Other Skill Labour (Civil) [1152 h]; Plant Operator [192 h]; Backhoe [24 h]; Roller [24] | AAu | CC F | TWL SUM | EX SUMP | 1 | 820 | F | 10.3 | RRIW | 820_AB |  |  |  |  |  |  |  |  |
|  | 2 | **Reinstatement** |  |  | 2012-05-31 | 2012-11-14 |  |  |  |  |  |  |  |  |  |  |  |  |  |  |  |  |  |  |  |  |  |  |  |  |
| 8200CCF345 |  | Make Good Pit Wall |  | 6d | 2012-05-31 A | 2012-06-06 A | 8200CCF305 | 100% | 2013-01-16 | 2013-01-22 | Cal 1 | Other Skill Labour (Civil) [144 h]; Plant Operator [48 h]; Backhoe [3 h]; Mobile Crane [3 h] | AAu | CC F | TWL SUM | EX SUMP | 1 | 820 | F | 10.3U | RRIW | 820_AB |  |  |  |  |  |  |  | Shaft 97m3;Adit 24m3 |
| 8200sum520 |  | TWL Reinstatement | level of effort | 83d | 2012-05-31 A | 2012-11-14 A | 8200CCF345 SS | 100% | 2013-01-16 | 2013-04-08 |  |  |  |  |  |  |  |  |  |  |  | 820_AB | 4 | 2012-07-13 | 2012-07-13 | S1 | 2013-07-24 | 2013-07-24 |  |  |
| 8200CCF355 |  | Reinstate Permanent Pump system |  | 22d | 2012-06-25 A | 2012-09-14 A | 8200CCF350 | 100% | 2013-02-05 | 2013-03-05 | Cal 1 | Other Skill Labour (Civil) [1152 h]; Plant Operator [192 h]; Backhoe [24 h]; Roller [24] | AAu | CC F | TWL SUM | EX SUMP | 1 | 820 | F | 10.3 | RRIW | 820_AB |  |  |  |  |  |  |  |  |
| 8200CCF350 |  | GI at Sump Pit for TWL |  | 11d | 2012-08-31 A | 2012-09-14 A | 8200CCF345 | 100% | 2013-01-23 | 2013-02-04 | Cal 1 | Other Skill Labour (Civil) [384 h] | AAu | CC F | TWL SUM | EX SUMP | 1 | 820 | F | 10.3U | RRIW | 820_AB |  |  |  |  |  |  |  |  |
| 8200CCF380 |  | Reinstate Pit Wall |  | 11d | 2012-09-24 A | 2012-10-27 A | 8200CCF355 | 100% | 2013-03-06 | 2013-03-18 | Cal 1 | Other Skill Labour (Civil) [288 h]; Plant Operator [144 h]; Backhoe [6 h]; Mobile Crane [6 h]; Bored Pile Rig [6 h] | AAu | CC F | TWL SUM | EX SUMP | 1 | 820 | F | 10.3 | RRIW | 820_AB |  |  |  |  |  |  |  | 105m3 |
| 8200CCF390 |  | Backfill Adit & Shaft by Lean Concrete |  | 14d | 2012-10-29 A | 2012-11-14 A | 8200CCF380 FF, 8200sum520 FF, 8200CCF380 | 100% | 2012-11-06 | 2012-11-21 | Cal 1 |  | AAu | CC F | TWL SUM | EX SUMP |  |  | F |  |  | 820_AB |  |  |  |  |  |  |  |  |

Notes:
- 8200CCF295: Basis & Assumptions: Shaft 3.2 dia., Adit 2.0 dia.?Shaft 12m, Adit / 7.5m
- 8200CCF300: Basis & Assumptions: Shaft 3.2 dia.?Shaft 13m
- 8200CCF345: Basis & Assumptions: Shaft 3.2 dia., Adit 2.0 dia.?Shaft 12m, Adit / 7.5m
- 8200CCF380: Basis & Assumptions: Shaft 3.2 dia.?Shaft 13m

| ID | WBS | Activity | Type | Duration | Start | Finish | Predecessors | Complete | Planned start | Planned finish | Calendar | Resources | Responsible by | LEVEL 1 | LEVEL 2 | LEVEL 3 | Cost Centre | 820_As-built | SUMMARY | Contracts | Phases of Works |
| --- | --- | --- | --- | --- | --- | --- | --- | --- | --- | --- | --- | --- | --- | --- | --- | --- | --- | --- | --- | --- | --- |
|  | 60 | **Completion** |  |  | 2013-07-02 | 2014-07-24 |  |  |  |  |  |  |  |  |  |  |  |  |  |  |  |
| 8200CCF310 |  | Prepare & Submit Draft As-built Drawings |  | 24d | 2013-07-02 A | 2014-07-24 A | 8200CCF305 | 100% | 2013-07-02 | 2013-07-29 | Cal 3 |  | AAu | CC F | TWL SUM | O&M AsB | F | 820_AB |  |  |  |
| 8200CCF315 |  | Prepare & Submit As-built Drawings |  | 24d | 2013-07-02 A | 2014-07-24 A | 8200CCF390, 8200CCF310 | 100% | 2013-07-02 | 2013-07-29 | Cal 3 |  | AAu | CC F | TWL SUM | O&M AsB | F | 820_AB |  |  |  |
|  | 30 | **F2 Complete Lai Chi Kok Overpass New Concrete Beam** |  |  | 2010-05-12 | 2014-03-20 |  |  |  |  |  |  |  |  |  |  |  |  |  |  |  |
|  | 10 | **Method Statement Submission and Approval** |  |  | 2011-03-07 | 2011-08-24 |  |  |  |  |  |  |  |  |  |  |  |  |  |  |  |
| 8200MTF200 |  | MS Preparation for Underpinning |  | 108d | 2011-03-07 A | 2011-04-08 A | 8200DSF250 | 100% | 2011-06-19 | 2011-10-04 |  |  | AAu | CC F | LCK OVB | MS PREP | F | 820_AB | 1 | 820 | C010 |
| 8200MTF210 |  | MS Submission to MTR/DSD | milestone | 0d | 2011-04-08 A | 2011-04-08 A | 8200MTF200 | 100% | 2011-08-31 | 2011-08-31 | Cal 3 |  | AAu | CC F | LCK OVB | MS PREP | F | 820_AB | 1 | 820 | C010 |
| 8200MTF220 |  | MS Comment by MTR |  | 24d | 2011-04-09 A | 2011-06-20 A | 8200MTF210 | 100% | 2011-08-31 | 2011-09-23 |  |  | AAu | CC F | LCK OVB | MS PREP | F | 820_AB | 1 | 820 | C010 |
| 8200MTF230 |  | MS Re-submission Preparation |  | 25d | 2011-06-21 A | 2011-07-12 A | 8200MTF220 | 100% | 2011-08-31 | 2011-09-29 | Cal 3 |  | AAu | CC F | LCK OVB | MS PREP | F | 820_AB | 1 | 820 | C010 |
| 8200MTF240 |  | MS Comment & Approval by MTR |  | 28d | 2011-07-12 A | 2011-08-24 A | 8200MTF230 FF, 8200MTF230 | 100% | 2011-08-31 | 2011-09-27 |  |  | AAu | CC F | LCK OVB | MS PREP | F | 820_AB | 1 | 820 | C010 |
| 8200MTF250 |  | Issue for Construction | milestone | 0d | 2011-08-24 A | 2011-08-24 A | 8200MTF240, 8200DSF290 | 100% | 2011-09-28 | 2011-09-28 | Cal 3 |  | AAu | CC F | LCK OVB | MS PREP | F | 820_AB | 1 | 820 | C010 |
|  | 20 | **TTM Scheme Submission & Approval** |  |  | 2010-05-12 | 2010-12-07 |  |  |  |  |  |  |  |  |  |  |  |  |  |  |  |
| 8200TMF100 |  | Prepare Temporary Traffic Management |  | 23d | 2010-05-12 A | 2010-06-09 A | 8200KD1020 | 100% | 2011-02-28 | 2011-03-25 | Cal 1 |  | AAu | CC F | LCK OVB | TTMS/AP | F | 820_AB | TTMS AP | 820 | C040 |
| 8200TMF115 |  | TTM reviewed by SLG |  | 30d | 2010-06-03 A | 2010-07-02 A | 8200TMF110 | 100% | 2011-06-28 | 2011-07-27 |  |  | AAu | CC F | LCK OVB | TTMS/AP | F | 820_AB | TTMS AP | 820 | C040 |
| 8200TMF105 |  | TTM reviewed by SLG |  | 85d | 2010-06-10 A | 2010-09-02 A | 8200TMF100 | 100% | 2011-03-26 | 2011-06-18 |  |  | AAu | CC F | LCK OVB | TTMS/AP | F | 820_AB | TTMS AP | 820 | C040 |
| 8200TMF125 |  | XP Application & Approval |  | 16d | 2010-07-19 A | 2010-08-03 A | 8200TMF105 SS+18d, 8200TMF115 FF+6d | 100% | 2011-06-02 | 2011-06-17 |  |  | AAu | CC F | LCK OVB | TTMS/AP | F | 820_AB |  | 820 | C040 |
| 8200TMF120 |  | Notification to RMO |  | 7d | 2010-08-07 A | 2010-08-13 A | 8200TMF115 | 100% | 2011-07-26 | 2011-08-01 |  |  | AAu | CC F | LCK OVB | TTMS/AP | F | 820_AB | TTMS AP | 820 | C040 |
| 8200TMF110 |  | Resubmit TTM |  | 6d | 2010-09-03 A | 2010-09-09 A | 8200TMF105 | 100% | 2011-06-21 | 2011-06-27 | Cal 1 |  | AAu | CC F | LCK OVB | TTMS/AP | F | 820_AB | TTMS AP | 820 | C040 |
| 8200TMF130 |  | Implement TTM | milestone | 0d | 2010-10-25 A | 2010-10-25 A | 8200TMF125, 8200TMF120 | 100% | 2011-08-12 | 2011-08-12 |  |  | AAu | CC F | LCK OVB | TTMS/AP | F | 820_AB | TTMS AP | 820 | C040 |
| 8200TMF135 |  | Traffic Diversion Works |  | 37d | 2010-10-26 A | 2010-12-07 A | 8200TMF130 | 100% | 2011-08-13 | 2011-09-29 | Cal 1 |  | AAu | CC F | LCK OVB | TTMS/AP | F | 820_AB | 1 | 820 | C040 |
|  | 40 | **Design Submission & Approval** |  |  | 2010-08-27 | 2011-06-20 |  |  |  |  |  |  |  |  |  |  |  |  |  |  |  |
| 8200DSF250 |  | Site Investigation |  | 102d | 2010-08-27 A | 2011-01-03 A | 8200DSF390 FS+27d, 8200AC1030, 8200AC1050 | 100% | 2011-06-01 | 2011-10-12 | Cal 1 | Other Skill Labour (Civil) [160 h]; Plant Operator [160 h] | AAu | CC F | LCK OVB | DES SUB | F | 820_AB | 1 | 820 | C010 |
| 8200DSF260 |  | Prepare Temp.Work Design for Underpinning |  | 120d | 2011-01-04 A | 2011-04-06 A | 8200DSF250 FS-12d | 100% | 2011-02-28 | 2011-07-26 | Cal 3 |  | AAu | CC F | LCK OVB | DES SUB | F | 820_AB | 1 | 820 | C010 |
| 8200DSF270 |  | Comment for Temp.Work Design Submission |  | 19d | 2011-04-07 A | 2011-04-21 A | 8200DSF260 | 100% | 2011-06-19 | 2011-07-07 |  |  | AAu | CC F | LCK OVB | DES SUB | F | 820_AB | 1 | 820 | C010 |
| 8200DSF280 |  | Proposed Temp.Work Design Re-submission |  | 6d | 2011-04-22 A | 2011-06-01 A | 8200DSF270 | 100% | 2011-08-31 | 2011-09-06 | Cal 3 |  | AAu | CC F | LCK OVB | DES SUB | F | 820_AB | 1 | 820 | C010 |
| 8200DSF290 |  | Proposed Temp.Work Design Approval |  | 18d | 2011-06-02 A | 2011-06-20 A | 8200DSF280 | 100% | 2011-08-31 | 2011-09-21 | Cal 3 |  | AAu | CC F | LCK OVB | DES SUB | F | 820_AB | 1 | 820 | C010 |

| ID | WBS | Activity | Type | Duration | Start | Finish | Predecessors | Complete | Planned start | Planned finish | Constraint | Calendar | Resources | Responsible by | LEVEL 1 | LEVEL 2 | LEVEL 3 | SUMMARY | Contracts | Cost Centre | Works Area | Phases of Works | 820_As-built | Classification of Works | Priority A | Sum1 | TBM DT s | TBM DT f | Production Rate | QUANTITY |
| --- | --- | --- | --- | --- | --- | --- | --- | --- | --- | --- | --- | --- | --- | --- | --- | --- | --- | --- | --- | --- | --- | --- | --- | --- | --- | --- | --- | --- | --- | --- |
|  | 50 | **Utilities Coordination** |  |  | 2010-06-01 | 2011-08-24 |  |  |  |  |  |  |  |  |  |  |  |  |  |  |  |  |  |  |  |  |  |  |  |  |
| 8200DSF340 |  | Preparation Excavation Permit |  | 53d | 2010-06-01 A | 2010-08-03 A | 8200DSF330 FF | 100% | 2011-04-11 | 2011-06-17 |  | Cal 3 |  | AAu | CC F | LCK OVB | UTILI C | 1 | 820 | F | 10.1 | C020 | 820_AB |  |  |  |  |  |  |  |
| 8200DSF300 |  | Prepare & Submit Utilities Diversion Scheme |  | 28d | 2010-07-02 A | 2010-08-03 A | 8200KD1020 FS+50d | 100% | 2011-02-28 | 2011-03-31 |  | Cal 3 |  | AAu | CC F | LCK OVB | UTILI C | 1 | 820 | F | 10.1 | C020 | 820_AB |  |  |  |  |  |  |  |
| 8200DSF350 |  | Excavation Permit Issue | milestone | 0d | 2010-08-03 A | 2010-08-03 A | 8200DSF340 | 100% | 2011-06-13 | 2011-06-13 |  | Cal 3 |  | AAu | CC F | LCK OVB | UTILI C | 1 | 820 | F | 10.1 | C020 | 820_AB |  |  |  |  |  |  |  |
| 8200DSF310 |  | Comment of Utilities Diversion Scheme |  | 53d | 2010-08-04 A | 2010-09-25 A | 8200DSF300 | 100% | 2011-04-01 | 2011-05-23 |  |  |  | AAu | CC F | LCK OVB | UTILI C | 1 | 820 | F | 10.1 | C020 | 820_AB |  |  |  |  |  |  |  |
| 8200DSF320 |  | Utilities Diversion Scheme Re-submission |  | 225d | 2011-03-07 A | 2011-07-12 A | 8200DSF310 | 100% | 2011-04-29 | 2012-01-31 |  | Cal 3 |  | AAu | CC F | LCK OVB | UTILI C | 1 | 820 | F | 10.1 | C020 | 820_AB |  |  |  |  |  |  |  |
| 8200DSF330 |  | Utilities Diversion Scheme Approval |  | 28d | 2011-07-13 A | 2011-08-24 A | 8200DSF320 | 100% | 2011-08-31 | 2011-09-27 |  |  |  | AAu | CC F | LCK OVB | UTILI C | 1 | 820 | F | 10.1 | C020 | 820_AB |  |  |  |  |  |  |  |
|  | 60 | **Site Possession Application** |  |  | 2010-05-24 | 2010-08-16 |  |  |  |  |  |  |  |  |  |  |  |  |  |  |  |  |  |  |  |  |  |  |  |  |
| 8200DSF370 |  | Prepare Site Possession to SLG |  | 9d | 2010-05-24 A | 2010-06-02 A | 8200AC1030, 8200AC1050, 8200KD1020 | 100% | 2011-02-28 | 2011-03-09 |  | Cal 3 |  | AAu | CC F | LCK OVB | SITEPOS | TTMS AP | 820 | F | 10.1 | C040 | 820_AB |  |  |  |  |  |  |  |
| 8200DSF380 |  | SLG Comments and Approval |  | 30d | 2010-06-03 A | 2010-07-02 A | 8200DSF370 | 100% | 2011-02-28 | 2011-03-29 |  |  |  | AAu | CC F | LCK OVB | SITEPOS | TTMS AP | 820 | F | 10.1 | C040 | 820_AB |  |  |  |  |  |  |  |
| 8200DSF390 |  | Site Possession | milestone | 0d | 2010-08-16 A | 2010-08-16 A | 8200DSF380 | 100% | 2011-02-28 | 2011-02-28 |  | Cal 1 |  | AAu | CC F | LCK OVB | SITEPOS | TTMS AP | 820 | F | 10.1 | C040 | 820_AB |  |  |  |  |  |  |  |
|  | 30 | **Utilities Diversion** |  |  | 2011-01-04 | 2011-07-02 |  |  |  |  |  |  |  |  |  |  |  |  |  |  |  |  |  |  |  |  |  |  |  |  |
| 8200CCF320 |  | Trial Trench & Record |  | 18d | 2011-01-04 A | 2011-01-25 A | 8200AC1030, 8200DSF350, 8200TMF130 | 100% | 2011-08-31 | 2011-09-23 |  | Cal 1 | Plant Operator [144 h]; Backhoe [18 h]; Other Skill Labour (Civil) [864 h] | AAu | CC F | LCK OVB | UTILI D | 1 | 820 | F | 10.1 | C020 | 820_AB | UTD |  |  |  |  |  |  |
| 8200sum480 |  | Utilities Diversion | level of effort | 0d | 2011-01-04 A | 2011-07-02 A | 8200CCF320 SS | 100% | 2011-08-31 | 2011-08-31 |  |  |  |  |  |  |  |  |  |  |  |  | 820_AB |  | 4 | S1 |  |  |  |  |
| 8200CCF325 |  | Permanently Divert Existing Storm Drain (SD201-SD205) |  | 48d | 2011-01-26 A | 2011-03-28 A | 8200CCF320 | 100% | 2011-09-24 | 2011-11-21 |  | Cal 1 | Other Skill Labour (Civil) [3840 h]; Plant Operator [768 h]; Backhoe [96 h] | AAu | CC F | LCK OVB | UTILI D | UTILITY | 820 | F | 10.1 | C020 | 820_AB | UTD |  |  |  |  |  |  |
| 8200CCF330 |  | Permanently Divert Existing DN150 (FW201) |  | 24d | 2011-03-29 A | 2011-05-04 A | 8200CCF325 | 100% | 2011-11-22 | 2011-12-19 |  | Cal 1 | Backhoe [24 h]; Plant Operator [192 h]; Other Skill Labour (Civil) [1920 h] | AAu | CC F | LCK OVB | UTILI D | UTILITY | 820 | F | 10.1 | C020 | 820_AB | UTD |  |  |  |  |  |  |
| 8200CCF335 |  | Temp. Relocation of Fire Hydrant (FH1643) |  | 18d | 2011-05-05 A | 2011-05-30 A | 8200CCF330, 8200CCF330 FF+6d | 100% | 2011-12-20 | 2012-01-12 |  | Cal 1 | Other Skill Labour (Civil) [864 h]; Plant Operator [144 h]; Backhoe [18 h] | AAu | CC F | LCK OVB | UTILI D | UTILITY | 820 | F | 10.1 | C020 | 820_AB | UTD |  |  |  |  |  |  |
| 8200CCF340 |  | Temp.Slew 3nos. 400kV Cable w/Temp.Support (CLP201) |  | 24d | 2011-05-31 A | 2011-07-02 A | 8200CCF335, 8200sum480 FF, 8200TMF135 | 100% | 2012-01-13 | 2012-02-13 |  | Cal 1 | Backhoe [48 h]; Plant Operator [384 h]; Other Skill Labour (Civil) [1920 h] | AAu | CC F | LCK OVB | UTILI D | UTILITY | 820 | F | 10.1 | C020 | 820_AB | UTD |  |  |  |  |  |  |
|  | 70 | **Underpinning Works for Pile Cap at Grid 3** |  |  | 2010-10-25 | 2013-09-29 |  |  |  |  |  |  |  |  |  |  |  |  |  |  |  |  |  |  |  |  |  |  |  |  |
| 8200CCF360 |  | Tree Transplant (by 801) |  | 13d | 2010-10-25 A | 2010-11-08 A |  | 100% | 2011-02-28 | 2011-03-14 | start on or after 2010-11-08 | Cal 1 |  | AAu | CC F | LCK OVB | UNDP P3 | 1 | 820 | F | 10.1 | C020 | 820_AB | RRIW |  |  |  |  |  |  |
| 8200CCF370 |  | Site Mobilization |  | 6d | 2011-07-04 A | 2011-07-09 A | 8200DSF270, 8200CCF320, 8200TMF135, 8200MTF220 | 100% | 2011-09-24 | 2011-09-30 |  | Cal 1 |  | AAu | CC F | LCK OVB | UNDP P3 | 1 | 820 | F | 10.1 | C020 | 820_AB | RRIW |  |  |  |  |  |  |
| 8200sum490 |  | Grid 3 Underpinning, Loading Transfer & Disconnection (DT) | level of effort | 284d | 2011-07-04 A | 2012-03-10 A | 8200CCF370 SS | 100% | 2011-09-24 | 2012-07-03 |  |  |  |  |  |  |  |  |  |  |  |  | 820_AB |  | 4 | S1 | 2012-07-05 | 2012-07-05 |  |  |
| 8200CCF372a |  | Const.Raking Mini-piles 23 nos. |  | 88d | 2011-07-11 A | 2011-10-31 A | 8200MTF210, 8200CCF370 FS-1d, 8200MTF220, 8200DSF290, 8200CCF360 | 100% | 2011-08-31 | 2011-12-16 |  | Cal 1 | nos. of Pile Installation [23 Nos]; Drilling Rig [44 h]; Plant Operator [704 h]; Mobile Crane [44 h]; Other Skill Labour (Civil) [4224 h] | AAu | CC F | LCK OVB | UNDP P3 | 1 | 820 | F | 10.1 | C060 | 820_AB | RRIW |  |  |  |  | Pile/3d | 8nos.+3d Setup |
| 8200CCF400a |  | Sheetpile Driving |  | 12d | 2011-10-31 A | 2011-11-14 A | 8200CCF372a, 8200MTF250 | 100% | 2012-01-16 | 2012-02-01 |  | Cal 1 | Other Skill Labour (Civil) [1152 h]; Plant Operator [192 h]; Mobile Crane [12 h]; Sheet piling rig [12] | AAu | CC F | LCK OVB | UNDP P3 | 1 | 820 | F | 10.1 | C050 | 820_AB | RRIW |  |  |  |  | 5m/d | ~46m long |
| 8200CCF402a |  | Waling Installation |  | 6d | 2011-11-14 A | 2011-11-21 A | 8200CCF400a FS-1d | 100% | 2012-01-16 | 2012-01-21 |  | Cal 1 | Other Skill Labour (Civil) [1728 h]; Plant Operator [144 h]; Mobile Crane [18 h] | AAu | CC F | LCK OVB | UNDP P3 | 1 | 820 | F | 10.1 | C050 | 820_AB | RRIW |  |  |  |  | 5m/d | ~46m long |
| 8200CCF405a |  | Excavation to FormationLevel(Underneath Exist'gPileCap) |  | 9d | 2011-11-21 A | 2011-12-01 A | 8200CCF402a | 100% | 2012-01-16 | 2012-01-28 |  | Cal 1 | Excavation - Soft [250 m3]; Other Skill Labour (Civil) [864 h]; Plant Operator [216 h]; Mobile Crane [9 h]; Backhoe [18 h] | AAu | CC F | LCK OVB | UNDP P3 | 1 | 820 | F | 10.1 | C050 | 820_AB | RRIW |  |  |  |  | 30m3/d | ~250m3 |
| 8200CCF410a |  | Pile Head Exposure |  | 24d | 2011-12-01 A | 2011-12-31 A | 8200CCF405a FS-1d | 100% | 2012-01-16 | 2012-02-15 |  | Cal 1 | Other Skill Labour (Civil) [2304 h]; Plant Operator [192 h]; Mobile Crane [24 h] | AAu | CC F | LCK OVB | UNDP P3 | 1 | 820 | F | 10.1 |  | 820_AB | RRIW |  |  |  |  |  | 2.2m3 |
| 8200CCF415 |  | Pile Cap & Column Construction |  | 11d | 2011-12-31 A | 2012-01-14 A | 8200CCF410a | 100% | 2012-01-16 | 2012-01-31 |  | Cal 1 | Other Skill Labour (Civil) [3456 h]; Plant Operator [288 h]; Mobile Crane [36 h] | AAu | CC F | LCK OVB | UNDP P3 | 1 | 820 | F | 10.1 | C060 | 820_AB | RRIW |  |  |  |  |  |  |
| 8200CCF425 |  | Portal Beam Construction |  | 6d | 2012-01-16 A | 2012-01-21 A | 8200CCF415 | 100% | 2012-08-31 | 2012-09-06 |  | Cal 1 | Other Skill Labour (Civil) [48 h]; Plant Operator [8 h]; Mobile Crane [1 h] | AAu | CC F | LCK OVB | UNDP P3 | 1 | 820 | F | 10.1 | C060 | 820_AB | RRIW |  |  |  |  |  |  |
| 8200CCF435 |  | Concrete Curing |  | 44d | 2012-01-22 A | 2012-02-19 A | 8200CCF425 | 100% | 2012-09-07 | 2012-10-20 |  |  | Other Skill Labour (Civil) [144 h]; Plant Operator [24 h]; Mobile Crane [3 h] | AAu | CC F | LCK OVB | UNDP P3 | 1 | 820 | F | 10.1 | C060 | 820_AB | RRIW |  |  |  |  |  |  |
| 8200CCF445 |  | Install Shear Key |  | 7d | 2012-02-01 A | 2012-02-23 A | 8200CCF435 FS-1d | 100% | 2012-10-20 | 2012-10-29 |  | Cal 1 | Other Skill Labour (Civil) [144 h]; Plant Operator [24 h]; Mobile Crane [3 h] | AAu | CC F | LCK OVB | UNDP P3 | 1 | 820 | F | 10.1 | C060 | 820_AB | RRIW |  |  |  |  |  |  |
| 8200CCF455 |  | Install Flat Jack |  | 19d | 2012-02-01 A | 2012-02-23 A | 8200CCF445 SS | 100% | 2012-10-20 | 2012-11-12 |  | Cal 1 | Other Skill Labour (Civil) [144 h]; Plant Operator [24 h]; Mobile Crane [3 h] | AAu | CC F | LCK OVB | UNDP P3 | 1 | 820 | F | 10.1 | C060 | 820_AB | RRIW |  |  |  |  |  |  |
| 8200CCF458 |  | Load Transfer |  | 21d | 2012-02-25 A | 2012-03-02 A | 8200CCF455 | 100% | 2012-11-13 | 2012-12-03 |  |  | Backhoe [72 h]; Roller [36]; Other Skill Labour (Civil) [1728 h]; Plant Operator [576 h] | AAu | CC F | LCK OVB | UNDP P3 | 1 | 820 | F | 10.1 |  | 820_AB | RRIW |  |  |  |  |  |  |
| 8200CCF468 |  | Disconnect Existing Pier |  | 18d | 2012-03-05 A | 2012-03-10 A | 8200CCF458 FS-1d, 8200sum490 FF | 100% | 2012-12-03 | 2012-12-22 |  | Cal 1 | Backhoe [72 h]; Roller [36]; Other Skill Labour (Civil) [1728 h]; Plant Operator [576 h] | AAu | CC F | LCK OVB | UNDP P3 | 1 | 820 | F | 10.1 |  | 820_AB | RRIW |  |  |  |  |  |  |
| 8200CCF918 |  | Adjust Jacking Force |  | 12d | 2012-08-31 A | 2012-09-22 A | 8200CCF468 FF, 8200CCF468 FS-1d | 100% | 2012-08-31 | 2012-09-14 |  | Cal 1 | Mobile Crane [12 h]; Plant Operator [96 h]; Other Skill Labour (Civil) [144 h] | AAu | CC F | LCK OVB | UNDP P1 | 1 | 820 | F | 10.1 | C060 | 820_AB | RRIW |  |  |  |  |  |  |
| 8200CCF928 |  | Infill grout for pier head and existing pile cap |  | 6d | 2012-09-24 A | 2012-09-30 A | 8200CCF918 FS-1d | 100% | 2012-09-24 | 2012-09-29 |  | Cal 1 | Plant Operator [96 h]; Other Skill Labour (Civil) [144 h]; Mobile Crane [12 h] | AAu | CC F | LCK OVB | UNDP P1 | 1 | 820 | F | 10.1 | C060 | 820_AB | RRIW |  |  |  |  |  |  |
| 8200CCF938 |  | Backfilling & Reinstatement |  | 12d | 2013-09-02 A | 2013-09-29 A | 8200CCF928 FS-1d | 100% | 2013-09-02 | 2013-09-16 |  | Cal 1 | Plant Operator [192 h]; Other Skill Labour (Civil) [576 h]; Backhoe [12 h]; Roller [12] | AAu | CC F | LCK OVB | UNDP P1 | 1 | 820 | F | 10.1 |  | 820_AB | RRIW |  |  |  |  |  |  |

Notes:
- 8200CCF372a: Basis & Assumptions: 23nos. 4d/pile
- 8200CCF400a: Basis & Assumptions: 135nos. w/4m depth
- 8200CCF402a: Basis & Assumptions: 135nos. w/4m depth
- 8200CCF455: Basis & Assumptions: 10nos.

| ID | WBS | Activity | Type | Duration | Start | Finish | Predecessors | Complete | Planned start | Planned finish | Calendar | Resources | Production Rate | QUANTITY | Responsible by | LEVEL 1 | LEVEL 2 | LEVEL 3 | SUMMARY | Contracts | Cost Centre | Works Area | Phases of Works | Classification of Works | 820_As-built | Priority A | Sum1 | TBM UT f | TBM UT s |
| --- | --- | --- | --- | --- | --- | --- | --- | --- | --- | --- | --- | --- | --- | --- | --- | --- | --- | --- | --- | --- | --- | --- | --- | --- | --- | --- | --- | --- | --- |
|  | 80 | **Underpinning Works for Pile Cap at Grid 2** |  |  | 2011-07-11 | 2013-09-29 |  |  |  |  |  |  |  |  |  |  |  |  |  |  |  |  |  |  |  |  |  |  |  |
| 8200CCF460a |  | Const.Raking Mini-piles 21nos. |  | 88d | 2011-07-11 A | 2011-10-31 A | 8200CCF372a | 100% | 2012-01-16 | 2012-05-11 | Cal 1 | nos. of Pile Installation [21 Nos]; Drilling Rig [44 h]; Mobile Crane [44 h]; Plant Operator [704 h]; Other Skill Labour (Civil) [2112 h] | Pile/3d | 8nos.+3d Setup | AAu | CC F | LCK OVB | UNDP P2 | 1 | 820 | F | 10.1 | C060 | RRIW | 820_AB |  |  |  |  |
| 8200sum500 |  | Grid 2 Underpinning,Loading Transfer & Disconnection (UT) | level of effort | 206d | 2011-07-11 A | 2012-04-28 A | 8200CCF460a SS | 100% | 2012-01-16 | 2012-08-08 |  |  |  |  |  |  |  |  |  |  |  |  |  |  | 820_AB | 4 | S1 | 2013-07-28 | 2013-07-28 |
| 8200CCF480a |  | Sheetpile Driving |  | 12d | 2011-10-31 A | 2011-11-14 A | 8200CCF460a | 100% | 2012-01-16 | 2012-02-01 | Cal 1 | Plant Operator [192 h]; Other Skill Labour (Civil) [1152 h]; Sheet piling rig [12]; Mobile Crane [12 h] | 10m/d | ~60m long | AAu | CC F | LCK OVB | UNDP P2 | 1 | 820 | F | 10.1 | C050 | RRIW | 820_AB |  |  |  |  |
| 8200CCF485a |  | Waling Installation |  | 6d | 2011-11-14 A | 2011-11-21 A | 8200CCF480a FS-1d | 100% | 2012-01-16 | 2012-01-21 | Cal 1 | Mobile Crane [18 h]; Plant Operator [144 h]; Other Skill Labour (Civil) [1728 h] | 30m3/d | ~410m3 | AAu | CC F | LCK OVB | UNDP P2 | 1 | 820 | F | 10.1 | C050 | RRIW | 820_AB |  |  |  |  |
| 8200CCF490a |  | Excavation |  | 9d | 2011-11-21 A | 2011-12-01 A | 8200CCF485a FS-1d | 100% | 2012-01-16 | 2012-01-28 | Cal 1 | Plant Operator [144 h]; Mobile Crane [18 h]; Other Skill Labour (Civil) [2592 h] |  |  | AAu | CC F | LCK OVB | UNDP P2 | 1 | 820 | F | 10.1 |  | RRIW | 820_AB |  |  |  |  |
| 8200CCF490b |  | Pile Head Exposure |  | 24d | 2011-12-01 A | 2011-12-31 A | 8200CCF490a FS-1d | 100% | 2012-01-28 | 2012-02-24 | Cal 1 | Plant Operator [192 h]; Mobile Crane [24 h]; Other Skill Labour (Civil) [2304 h] |  |  | AAu | CC F | LCK OVB | UNDP P2 | 1 | 820 | F | 10.1 |  | RRIW | 820_AB |  |  |  |  |
| 8200CCF495a |  | Pile Cap Construciton |  | 12d | 2011-12-31 A | 2012-01-14 A | 8200CCF490b FS-3d | 100% | 2012-01-16 | 2012-02-01 | Cal 1 | Plant Operator [288 h]; Mobile Crane [36 h]; Other Skill Labour (Civil) [3456 h] |  |  | AAu | CC F | LCK OVB | UNDP P2 | 1 | 820 | F | 10.1 | C060 | RRIW | 820_AB |  |  |  |  |
| 8200CCF495b |  | Coulumns Construction (2nos.) |  | 10d | 2012-01-14 A | 2012-01-30 A | 8200CCF495a FS-1d | 100% | 2012-01-16 | 2012-01-30 | Cal 1 | Plant Operator [288 h]; Mobile Crane [36 h]; Other Skill Labour (Civil) [3456 h] |  |  | AAu | CC F | LCK OVB | UNDP P2 | 1 | 820 | F | 10.1 | C060 | RRIW | 820_AB |  |  |  |  |
| 8200CCF495c |  | Falsework Erection |  | 9d | 2012-01-28 A | 2012-02-07 A | 8200CCF495b FS-1d | 100% | 2012-09-11 | 2012-09-21 | Cal 1 | Plant Operator [288 h]; Mobile Crane [36 h]; Other Skill Labour (Civil) [3456 h] |  |  | AAu | CC F | LCK OVB | UNDP P2 | 1 | 820 | F | 10.1 | C060 | RRIW | 820_AB |  |  |  |  |
| 8200CCF495d |  | Portal Beam Construction |  | 12d | 2012-02-07 A | 2012-03-03 A | 8200CCF495c FS-1d | 100% | 2012-09-21 | 2012-10-06 | Cal 1 | Plant Operator [288 h]; Mobile Crane [36 h]; Other Skill Labour (Civil) [3456 h] |  |  | AAu | CC F | LCK OVB | UNDP P2 | 1 | 820 | F | 10.1 | C060 | RRIW | 820_AB |  |  |  |  |
| 8200CCF500 |  | Concrete Curing |  | 14d | 2012-03-04 A | 2012-03-18 A | 8200CCF495d FS-1d | 100% | 2012-10-06 | 2012-10-19 |  |  |  |  | AAu | CC F | LCK OVB | UNDP P2 | 1 | 820 | F | 10.1 | C060 | RRIW | 820_AB |  |  |  |  |
| 8200CCF500a |  | Install Shear Key |  | 6d | 2012-03-19 A | 2012-03-26 A | 8200CCF500 | 100% | 2012-10-20 | 2012-10-27 | Cal 1 |  |  |  | AAu | CC F | LCK OVB | UNDP P2 | 1 | 820 | F | 10.1 | C060 | RRIW | 820_AB |  |  |  |  |
| 8200CCF500b |  | Install Flat Jack |  | 18d | 2012-03-19 A | 2012-04-03 A | 8200CCF500a FS-1d | 100% | 2012-10-27 | 2012-11-16 | Cal 1 |  |  |  | AAu | CC F | LCK OVB | UNDP P2 | 1 | 820 | F | 10.1 | C060 | RRIW | 820_AB |  |  |  |  |
| 8200CCF505 |  | Load Transfer |  | 21d | 2012-04-04 A | 2012-04-14 A | 8200CCF500b FS-1d | 100% | 2012-11-16 | 2012-12-06 |  | Plant Operator [8 h]; Mobile Crane [1 h]; Other Skill Labour (Civil) [48 h] |  |  | AAu | CC F | LCK OVB | UNDP P2 | 1 | 820 | F | 10.1 | C060 | RRIW | 820_AB |  |  |  |  |
| 8200CCF510 |  | Disconnect Existing pier |  | 18d | 2012-04-14 A | 2012-04-28 A | 8200CCF505 FS-1d, 8200sum500 FF | 100% | 2012-12-06 | 2012-12-28 | Cal 1 | Plant Operator [192 h]; Mobile Crane [24 h]; Other Skill Labour (Civil) [2304 h] |  |  | AAu | CC F | LCK OVB | UNDP P2 | 1 | 820 | F | 10.1 | C060 | RRIW | 820_AB |  |  |  |  |
| 8200CCF515 |  | Adjust Jacking Force |  | 12d | 2012-08-31 A | 2012-09-22 A | 8200CCF510 FS-1d | 100% | 2012-08-31 | 2012-09-14 | Cal 1 | Mobile Crane [12 h]; Plant Operator [96 h]; Other Skill Labour (Civil) [144 h] |  |  | AAu | CC F | LCK OVB | UNDP P1 | 1 | 820 | F | 10.1 | C060 | RRIW | 820_AB |  |  |  |  |
| 8200CCF516 |  | Infill grout for pier head and existing pile cap |  | 6d | 2012-09-24 A | 2012-09-29 A | 8200CCF515 FS-1d | 100% |  |  | Cal 1 | Mobile Crane [12 h]; Plant Operator [96 h]; Other Skill Labour (Civil) [144 h] |  |  | AAu | CC F | LCK OVB | UNDP P1 | 1 | 820 | F | 10.1 | C060 | RRIW | 820_AB |  |  |  |  |
| 8200CCF520 |  | Backfilling & Reinstatement |  | 12d | 2013-09-02 A | 2013-09-29 A | 8200CCF516, 8200CCF515, 8200CCF938 SS | 100% | 2013-09-02 | 2013-09-16 | Cal 1 | Plant Operator [192 h]; Other Skill Labour (Civil) [576 h]; Backhoe [12 h]; Roller [12] |  |  | AAu | CC F | LCK OVB | UNDP P1 | 1 | 820 | F | 10.1 |  | RRIW | 820_AB |  |  |  |  |
|  | 90 | **Underpinning Works for Pile Cap at Grid 1** |  |  | 2011-08-08 | 2013-09-29 |  |  |  |  |  |  |  |  |  |  |  |  |  |  |  |  |  |  |  |  |  |  |  |
| 8200CCF540a |  | Const piles |  | 91d | 2011-08-08 A | 2011-11-30 A | 8200CCF460a, 8200CCF340 | 100% | 2012-01-16 | 2012-05-15 | Cal 1 | Other Skill Labour (Civil) [864 h]; Plant Operator [288 h]; nos. of Pile Installation [24 Nos]; Drilling Rig [18 h]; Mobile Crane [18 h] | Pile/3d | 6nos. | AAu | CC F | LCK OVB | UNDP P1 | 1 | 820 | F | 10.1 | C060 | RRIW | 820_AB |  |  |  |  |
| 8200sum510 |  | Grid 1 Underpinning,Loading Transfer & Disconnection (UT) | level of effort | 199d | 2011-08-08 A | 2012-08-31 A | 8200CCF540a SS | 100% | 2012-01-16 | 2012-08-01 |  |  |  |  |  |  |  |  |  |  |  |  |  |  | 820_AB | 4 | S1 | 2013-07-28 | 2013-07-28 |
| 8200CCF555 |  | Loading Test |  | 24d | 2011-12-01 A | 2011-12-31 A | 8200CCF540a | 100% | 2012-01-16 | 2012-02-15 | Cal 1 | Plant Operator [192 h]; Mobile Crane [24 h]; Other Skill Labour (Civil) [1152 h] |  |  | AAu | CC F | LCK OVB | UNDP P1 | 1 | 820 | F | 10.1 | C060 | RRIW | 820_AB |  |  |  |  |
| 8200CCF560a |  | Sheetpile Driving |  | 23d | 2011-12-01 A | 2011-12-21 A | 8200CCF555 | 100% | 2012-01-16 | 2012-02-14 | Cal 1 | Plant Operator [288 h]; Mobile Crane [18 h]; Sheet piling rig [18]; Other Skill Labour (Civil) [1440 h] | 10m/d | ~54m long | AAu | CC F | LCK OVB | UNDP P1 | 1 | 820 | F | 10.1 | C050 | RRIW | 820_AB |  |  |  |  |
| 8200CCF560b |  | Waling Installation |  | 18d | 2011-12-21 A | 2012-01-14 A | 8200CCF560a FS-1d | 100% | 2012-01-16 | 2012-02-08 | Cal 1 | Plant Operator [288 h]; Mobile Crane [18 h]; Sheet piling rig [18]; Other Skill Labour (Civil) [1440 h] | 10m/d | ~54m long | AAu | CC F | LCK OVB | UNDP P1 | 1 | 820 | F | 10.1 | C050 | RRIW | 820_AB |  |  |  |  |
| 8200CCF565a |  | Excavation |  | 12d | 2012-01-16 A | 2012-02-01 A | 8200CCF560b FS-1d | 100% | 2012-08-31 | 2012-09-14 | Cal 1 | Excavation - Soft [380 m3]; Other Skill Labour (Civil) [1152 h]; Backhoe [24 h]; Plant Operator [288 h]; Mobile Crane [12 h] | 30m3/d | ~380m3 | AAu | CC F | LCK OVB | UNDP P1 | 1 | 820 | F | 10.1 | C050 | RRIW | 820_AB |  |  |  |  |
| 8200CCF565b |  | Shotcrete |  | 18d | 2012-02-02 A | 2012-02-22 A | 8200CCF565a | 100% | 2012-09-15 | 2012-10-09 | Cal 1 |  |  |  |  | CC F | LCK OVB | UNDP P1 |  |  | F |  |  |  | 820_AB |  |  |  |  |
| 8200CCF565c |  | Pile Head Exposure |  | 24d | 2012-02-23 A | 2012-03-21 A | 8200CCF565b, 8200CCF565a FS-1d | 100% | 2012-10-10 | 2012-11-07 | Cal 1 | Other Skill Labour (Civil) [1152 h]; Backhoe [24 h]; Plant Operator [288 h]; Mobile Crane [12 h]; Excavation - Soft [380 m3] | 30m3/d | ~380m3 | AAu | CC F | LCK OVB | UNDP P1 | 1 | 820 | F | 10.1 | C050 | RRIW | 820_AB |  |  |  |  |
| 8200CCF570a |  | Pile Cap & Cantilever Corbel Construction |  | 24d | 2012-03-22 A | 2012-04-21 A | 8200CCF565a, 8200CCF565c | 100% | 2012-11-08 | 2012-12-05 | Cal 1 | Plant Operator [144 h]; Mobile Crane [18 h]; Other Skill Labour (Civil) [1728 h] |  |  | AAu | CC F | LCK OVB | UNDP P1 | 1 | 820 | F | 10.1 |  | RRIW | 820_AB |  |  |  |  |
| 8200CCF580 |  | Concrete Curing (28d) |  | 28d | 2012-04-21 A | 2012-05-17 A | 8200CCF570a FS-1d | 100% | 2012-12-05 | 2013-01-01 |  |  |  |  | AAu | CC F | LCK OVB | UNDP P1 | 1 | 820 | F | 10.1 | C060 | RRIW | 820_AB |  |  |  |  |
| 8200CCF580b |  | Install Flat Jack |  | 18d | 2012-04-30 A | 2012-05-14 A | 8200CCF580 FS-1d | 100% | 2013-01-02 | 2013-01-22 | Cal 1 |  |  |  | AAu | CC F | LCK OVB | UNDP P1 | 1 | 820 | F | 10.1 | C060 | RRIW | 820_AB |  |  |  |  |
| 8200CCF585 |  | Load Transfer |  | 9d | 2012-05-14 A | 2012-05-25 A | 8200CCF580b FS-1d | 100% | 2013-01-22 | 2013-01-31 | Cal 1 | Mobile Crane [1 h]; Plant Operator [8 h]; Other Skill Labour (Civil) [48 h] |  |  | AAu | CC F | LCK OVB | UNDP P1 | 1 | 820 | F | 10.1 | C060 | RRIW | 820_AB |  |  |  |  |
| 8200CCF590 |  | Disconnect Existing Piles 6nos. |  | 24d | 2012-08-27 A | 2012-08-31 A | 8200CCF585 FS-1d, 8200sum510 FF | 100% | 2013-01-31 | 2013-03-02 | Cal 1 | Mobile Crane [24 h]; Plant Operator [192 h]; Other Skill Labour (Civil) [2304 h] |  |  | AAu | CC F | LCK OVB | UNDP P1 | 1 | 820 | F | 10.1 | C060 | RRIW | 820_AB |  |  |  |  |
| 8200CCF592 |  | Adjust Jacking Force |  | 18d | 2012-08-31 A | 2012-09-22 A | 8200CCF590 FS-1d | 100% | 2013-03-02 | 2013-03-22 | Cal 1 | Mobile Crane [12 h]; Plant Operator [96 h]; Other Skill Labour (Civil) [144 h] |  |  | AAu | CC F | LCK OVB | UNDP P1 | 1 | 820 | F | 10.1 | C060 | RRIW | 820_AB |  |  |  |  |
| 8200CCF595 |  | Cast remaining part of pile cap |  | 18d | 2012-09-24 A | 2012-10-13 A | 8200CCF590 FS-1d, 8200CCF592 | 100% | 2013-03-23 | 2013-04-18 | Cal 1 | Mobile Crane [3 h]; Plant Operator [24 h]; Other Skill Labour (Civil) [144 h] |  |  | AAu | CC F | LCK OVB | UNDP P1 | 1 | 820 | F | 10.1 | C060 | RRIW | 820_AB |  |  |  |  |
| 8200CCF600 |  | Backfilling & Reinstatement |  | 18d | 2013-09-02 A | 2013-09-29 A | 8200CCF520, 8200CCF595 | 100% | 2013-09-02 | 2013-09-25 | Cal 1 | Plant Operator [288 h]; Other Skill Labour (Civil) [864 h]; Backhoe [18 h]; Roller [18] |  |  | AAu | CC F | LCK OVB | UNDP P1 | 1 | 820 | F | 10.1 |  | RRIW | 820_AB |  |  |  |  |

Notes:
- 8200CCF460a: Basis & Assumptions: 4d/pile w/35m depth
- 8200CCF480a: Basis & Assumptions: 145nos. w/4m depth
- 8200CCF485a: Basis & Assumptions: Area:122+42=164m2,&~2.4m depth
- 8200CCF495b: Basis & Assumptions: 2nos
- 8200CCF500b: Basis & Assumptions: 10nos.
- 8200CCF540a: Basis & Assumptions: 6nos. of Pile; 6x21=126m(Soft);6x12.5(Rock)
- 8200CCF560a: Basis & Assumptions: 123nos. w/6m depth
- 8200CCF560b: Basis & Assumptions: 123nos. w/6m depth
- 8200CCF565a: Basis & Assumptions: Area:122+42=164m2,&~2.4m depth
- 8200CCF565c: Basis & Assumptions: Area:122+42=164m2,&~2.4m depth
- 8200CCF580b: Basis & Assumptions: 10nos
- 8200CCF590: Basis & Assumptions: 457x457 Piles 6nos.5d/pile

| ID | WBS | Activity | Type | Duration | Start | Finish | Predecessors | Complete | Planned start | Planned finish | Calendar | Resources | Responsible by | LEVEL 1 | LEVEL 2 | LEVEL 3 | Cost Centre | 820_As-built | SUMMARY | Responsible (bm makes Global) | Contracts | Phases of Works | Works Area |
| --- | --- | --- | --- | --- | --- | --- | --- | --- | --- | --- | --- | --- | --- | --- | --- | --- | --- | --- | --- | --- | --- | --- | --- |
|  | 100 | **Completion** |  |  | 2012-03-06 | 2014-03-20 |  |  |  |  |  |  |  |  |  |  |  |  |  |  |  |  |  |
| 8200CCF602 |  | Prepare & Submit Draft As-built Drawings |  | 24d | 2012-03-06 A | 2014-03-20 A | 8200CCF600 | 100% | 2012-03-06 | 2012-04-02 | Cal 3 |  | AAu | CC F | LCK OVB | O&M AsB | F | 820_AB |  |  |  |  |  |
| 8200CCF604 |  | Prepare & Submit As-built Drawings |  | 24d | 2012-03-06 A | 2014-03-20 A | 8200CCF602 | 100% | 2012-03-06 | 2012-04-02 | Cal 3 |  | AAu | CC F | LCK OVB | O&M AsB | F | 820_AB |  |  |  |  |  |
|  | 90 | **RD1 Pile Removal** |  |  | 2010-11-12 | 2012-01-09 |  |  |  |  |  |  |  |  |  |  |  |  |  |  |  |  |  |
| 8200CCF901 |  | RD1 Parallel Seismic |  | 2d | 2010-11-12 A | 2010-11-13 A |  | 100% | 2012-01-16 | 2012-01-17 | Cal 1 |  |  | CC F | RD1 | CONS | F | 820_AB |  |  |  |  |  |
| 8200CCF902 |  | Issuance of EI21 - Additional Investigation Drill hole above Nullah Deck at LCK | milestone | 0d | 2011-06-08 A | 2011-06-08 A |  | 100% | 2012-01-16 | 2012-01-16 | Cal 1 |  |  | CC F | RD1 | CONS | F | 820_AB |  |  |  |  |  |
| 8200CCF904 |  | Pile A - 1st Investigation Campaign |  | 4d | 2011-06-23 A | 2011-06-26 A |  | 100% | 2012-01-16 | 2012-01-19 | Cal 1 |  |  | CC F | RD1 | CONS | F | 820_AB |  |  |  |  |  |
| 8200CCF912 |  | Issuance of EI24 - Additional Investigation Drillhole at existing pile above Nullah Deck at LCK | milestone | 0d | 2011-08-10 A | 2011-08-10 A |  | 100% | 2012-01-16 | 2012-01-16 | Cal 1 |  |  | CC F | RD1 | CONS | F | 820_AB |  |  |  |  |  |
| 8200CCF914 |  | Pile B - 1st Investigation Campaign |  | 2d | 2011-09-21 A | 2011-09-22 A |  | 100% | 2012-01-16 | 2012-01-17 | Cal 1 |  |  | CC F | RD1 | CONS | F | 820_AB |  |  |  |  |  |
| 8200CCF924 |  | Pile B - 2nd Investigation Campaign |  | 6d | 2011-09-22 A | 2011-09-29 A |  | 100% | 2012-01-16 | 2012-01-21 | Cal 1 |  |  | CC F | RD1 | CONS | F | 820_AB |  |  |  |  |  |
| 8200CCF926 |  | Pile B - 3rd Investigation Campaign (inclined holes) |  | 14d | 2011-11-17 A | 2011-12-03 A |  | 100% | 2012-01-16 | 2012-02-03 | Cal 1 |  |  | CC F | RD1 | CONS | F | 820_AB |  |  |  |  |  |
| 8200CCF922 |  | Issuance of EI31 - Additional attempts of vertical drillholes and inclined drillholes at existing Pile of RD1 | milestone | 0d | 2012-01-09 A | 2012-01-09 A |  | 100% | 2012-01-16 | 2012-01-16 | Cal 1 |  |  | CC F | RD1 | CONS | F | 820_AB |  |  |  |  |  |
|  | 40 | **F3 Ground Treatment Works for HKIVE (Haking Wong) School** |  |  | 2011-02-10 | 2012-08-15 |  |  |  |  |  |  |  |  |  |  |  |  |  |  |  |  |  |
|  | 10 | **Method Statement Submission and Approval** |  |  | 2011-02-10 | 2011-08-18 |  |  |  |  |  |  |  |  |  |  |  |  |  |  |  |  |  |
| 8200MTF310 |  | MS Preparation |  | 24d | 2011-02-10 A | 2011-03-10 A | 8200KD1020 FS+400d | 100% | 2011-08-31 | 2011-09-23 |  |  | MiC | CC F | F3HKIVE | MS PREP | F | 820_AB | 1 | ARo | 820 | C010 |  |
| 8200MTF315 |  | MS Submission to MTR | milestone | 0d | 2011-03-10 A | 2011-03-10 A | 8200MTF310 | 100% | 2011-08-31 | 2011-08-31 | Cal 3 |  | MiC | CC F | F3HKIVE | MS PREP | F | 820_AB | 1 | ARo | 820 | C010 |  |
| 8200MTF320 |  | MS Comment by MTR |  | 28d | 2011-03-11 A | 2011-05-03 A | 8200MTF315 | 100% | 2011-08-31 | 2011-09-27 |  |  | MiC | CC F | F3HKIVE | MS PREP | F | 820_AB | 1 | ARo | 820 | C010 |  |
| 8200MTF325 |  | MS Re-submission Preparation |  | 24d | 2011-05-04 A | 2011-06-28 A | 8200MTF320 | 100% | 2011-08-31 | 2011-09-28 | Cal 3 |  | MiC | CC F | F3HKIVE | MS PREP | F | 820_AB | 1 | ARo | 820 | C010 |  |
| 8200MTF330 |  | MS Comment & Approval by MTR |  | 28d | 2011-06-29 A | 2011-08-18 A | 8200MTF325 FF, 8200MTF325 | 100% | 2011-08-31 | 2011-09-27 |  |  | MiC | CC F | F3HKIVE | MS PREP | F | 820_AB | 1 | ARo | 820 | C010 |  |
| 8200MTF335 |  | Issue for Construction | milestone | 0d | 2011-08-18 A | 2011-08-18 A | 8200KD1020, 8200MTF320 FS+1d, 8200MTF330 | 100% | 2011-08-31 | 2011-08-31 | Cal 3 |  | MiC | CC F | F3HKIVE | MS PREP | F | 820_AB | 1 | ARo | 820 | C010 |  |
|  | 20 | **Construction** |  |  | 2011-11-14 | 2012-08-15 |  |  |  |  |  |  |  |  |  |  |  |  |  |  |  |  |  |
| 8200CCF620 |  | Access for HKIVE | milestone | 0d | 2011-11-14 A | 2011-11-14 A | 8200KD1020 FS+552d | 100% | 2012-01-15 | 2012-01-15 |  |  | CIp | CC F | F3HKIVE | CONS | F | 820_AB | A |  | 820 | C010 | 11.10B |
| 8200CCF622 |  | Site Preparation |  | 6d | 2011-11-14 A | 2011-11-21 A | 8200CCF620 | 100% | 2012-01-16 | 2012-01-21 | Cal 1 | Other Skill Labour (Civil) [7200 h]; Plant Operator [600 h]; Mobile Crane [75 h] | CIp | CC F | F3HKIVE | CONS | F | 820_AB | 1 |  | 820 | C010 | 11.10B |
| 8200CCF712 |  | Sleeve Pipe Installation and Verticality Check |  | 20d | 2011-11-22 A | 2011-12-15 A | 8200MTC160, 8200CCF622 | 100% | 2012-01-16 | 2012-02-10 | Cal 1 |  | CIp | CC F | F3HKIVE | CONS | F | 820_AB |  |  |  |  |  |
| 8200CCF722 |  | Set up Grouting Machine |  | 3d | 2011-12-15 A | 2011-12-19 A | 8200CCF712 | 100% | 2012-01-16 | 2012-01-18 | Cal 1 |  | CIp | CC F | F3HKIVE | CONS | F | 820_AB |  |  |  |  |  |
| 8200CCF732 |  | Jet Grouting for HKIVE (Haking Wong) School |  | 20d | 2011-12-19 A | 2012-01-14 A | 8200CCF722, 8200CCF622, 8200CCF620, 8200y0170 FF, 8200sum068 FF, 8200MTF335 | 100% | 2012-01-16 | 2012-02-10 | Cal 1 | Other Skill Labour (Civil) [7200 h]; Plant Operator [600 h]; Mobile Crane [75 h] | CIp | CC F | F3HKIVE | CONS | F | 820_AB | 1 |  | 820 | C010 | 11.10B |
| 8200CCF742 |  | De-mobilization |  | 12d | 2012-01-16 A | 2012-02-01 A | 8200CCF732 | 100% | 2012-08-31 | 2012-09-14 | Cal 1 |  | CIp | CC F | F3HKIVE | CONS | F | 820_AB |  |  |  |  |  |
| 8200CCF752 |  | Reinstatment (subjected to IVE) |  | 36d | 2012-07-16 A | 2012-08-15 A | 8200TBC777, 8200TBC780, 8200CCF742, 8200TBC778 | 100% | 2012-09-15 | 2012-10-31 | Cal 1 |  | CIp | CC F | F3HKIVE | CONS | F | 820_AB |  |  |  |  |  |

| ID | WBS | Activity | Type | Duration | Start | Finish | Predecessors | Complete | Planned start | Planned finish | Calendar | Resources | Responsible by | LEVEL 1 | LEVEL 2 | LEVEL 3 | SUMMARY | Responsible (bm makes Global) | Contracts | Cost Centre | Phases of Works | 820_As-built | Works Area | Classification of Works | QUANTITY |
| --- | --- | --- | --- | --- | --- | --- | --- | --- | --- | --- | --- | --- | --- | --- | --- | --- | --- | --- | --- | --- | --- | --- | --- | --- | --- |
|  | 50 | **F4 Cheung Sha Wan Cargo Pier-Remvoe Obstruct Pile** |  |  | 2010-05-12 | 2015-04-30 |  |  |  |  |  |  |  |  |  |  |  |  |  |  |  |  |  |  |  |
|  | 10 | **Method Statement Submission and Approval** |  |  | 2010-07-20 | 2010-11-05 |  |  |  |  |  |  |  |  |  |  |  |  |  |  |  |  |  |  |  |
| 8200MTF350 |  | MS Preparation |  | 37d | 2010-07-20 A | 2010-08-25 A | 8200KD1020 FS+108d | 100% | 2011-02-28 | 2011-04-05 |  |  | MLa | CC F | F4CSW | MS PREP | 1 | ARo | 820 | F | C010 | 820_AB |  |  |  |
| 8200MTF355 |  | MS Submission to MTR | milestone | 0d | 2010-08-25 A | 2010-08-25 A | 8200KD1020, 8200MTF350 | 100% | 2011-03-23 | 2011-03-23 | Cal 3 |  | MLa | CC F | F4CSW | MS PREP | 1 | ARo | 820 | F | C010 | 820_AB |  |  |  |
| 8200MTF360 |  | MS Comment by MTR |  | 28d | 2010-08-26 A | 2010-09-22 A | 8200MTF355 | 100% | 2011-03-24 | 2011-04-20 |  |  | MLa | CC F | F4CSW | MS PREP | 1 | ARo | 820 | F | C010 | 820_AB |  |  |  |
| 8200MTF365 |  | MS Re-submission Preparation |  | 16d | 2010-09-23 A | 2010-10-13 A | 8200MTF360 | 100% | 2011-04-21 | 2011-05-14 | Cal 3 |  | MLa | CC F | F4CSW | MS PREP | 1 | ARo | 820 | F | C010 | 820_AB |  |  |  |
| 8200MTF370 |  | MS Comment & Approval by MTR |  | 22d | 2010-10-14 A | 2010-11-04 A | 8200MTF365 FF, 8200MTF365 | 100% | 2011-05-25 | 2011-06-15 |  |  | MLa | CC F | F4CSW | MS PREP | 1 | ARo | 820 | F | C010 | 820_AB |  |  |  |
| 8200MTF375 |  | Issue for Construction | milestone | 0d | 2010-11-05 A | 2010-11-05 A | 8200MTF370, 8200MTF360 FS+1d | 100% | 2011-06-21 | 2011-06-21 | Cal 3 |  | MLa | CC F | F4CSW | MS PREP | 1 | ARo | 820 | F | C010 | 820_AB |  |  |  |
|  | 20 | **TTM Scheme Submission & Approval** |  |  | 2010-05-12 | 2010-11-08 |  |  |  |  |  |  |  |  |  |  |  |  |  |  |  |  |  |  |  |
| 8200TMF400 |  | Prepare TTM for footpah closure |  | 22d | 2010-05-12 A | 2010-06-08 A | 8200KD1020 FS+30d | 100% | 2011-01-08 | 2011-02-07 | Cal 1 |  | HCh | CC F | F4CSW | TTMS/AP | TTMS AP |  | 820 | F | C040 | 820_AB |  |  |  |
| 8200TMF425 |  | Prepare Temporary Traffic Management |  | 22d | 2010-05-12 A | 2010-06-08 A | 8200KD1020 FS+30d | 100% | 2011-02-28 | 2011-03-24 | Cal 1 |  | HCh | CC F | F4CSW | TTMS/AP | TTMS AP |  | 820 | F | C040 | 820_AB |  |  |  |
| 8200TMF415 |  | XP Application & Approval |  | 38d | 2010-06-01 A | 2010-07-08 A | 8200TMF405 SS+18d | 100% | 2011-02-28 | 2011-04-06 |  |  | HCh | CC F | F4CSW | TTMS/AP |  |  | 820 | F | C040 | 820_AB |  |  |  |
| 8200TMF405 |  | TTM Comment & Approval by Relevant Authorities |  | 58d | 2010-06-09 A | 2010-08-05 A | 8200TMF400, 8200KD1020 | 100% | 2011-02-12 | 2011-04-10 |  |  | HCh | CC F | F4CSW | TTMS/AP | TTMS AP |  | 820 | F | C040 | 820_AB |  |  |  |
| 8200TMF430 |  | TTM reviewed by SLG |  | 58d | 2010-06-09 A | 2010-08-05 A | 8200TMF425 | 100% | 2011-03-27 | 2011-05-23 |  |  | HCh | CC F | F4CSW | TTMS/AP | TTMS AP |  | 820 | F | C040 | 820_AB |  |  |  |
| 8200TMF445 |  | XP Application & Approval |  | 7d | 2010-07-02 A | 2010-07-08 A | 8200TMF430 SS+30d | 100% | 2011-04-23 | 2011-04-29 |  |  | HCh | CC F | F4CSW | TTMS/AP |  |  | 820 | F | C040 | 820_AB |  |  |  |
| 8200TMF410 |  | Notification to RMO |  | 7d | 2010-10-19 A | 2010-10-25 A | 8200TMF405 | 100% | 2011-02-28 | 2011-03-06 |  |  | HCh | CC F | F4CSW | TTMS/AP | TTMS AP |  | 820 | F | C040 | 820_AB |  |  |  |
| 8200TMF450 |  | Notification to RMO |  | 6d | 2010-10-19 A | 2010-10-25 A | 8200TMF430, 8200TMF425 SF | 100% | 2011-08-09 | 2011-08-14 |  |  | HCh | CC F | F4CSW | TTMS/AP | TTMS AP |  | 820 | F | C040 | 820_AB |  |  |  |
| 8200TMF420 |  | Implement TTM (Footpath) | milestone | 0d | 2010-11-08 A | 2010-11-08 A | 8200TMF405, 8200TMF410, 8200TMF415 | 100% | 2011-05-18 | 2011-05-18 |  |  | HCh | CC F | F4CSW | TTMS/AP | TTMS AP |  | 820 | F | C040 | 820_AB |  |  |  |
| 8200TMF455 |  | Implement TTM (Road) | milestone | 0d | 2010-11-08 A | 2010-11-08 A | 8200TMF445, 8200TMF450 | 100% | 2011-07-06 | 2011-07-06 |  |  | HCh | CC F | F4CSW | TTMS/AP | TTMS AP |  | 820 | F | C040 | 820_AB |  |  |  |
|  | 50 | **Utilities Diversion (DT)** |  |  | 2010-10-04 | 2011-08-29 |  |  |  |  |  |  |  |  |  |  |  |  |  |  |  |  |  |  |  |
| 8200CCF702 |  | Implement TTM |  | 30d | 2010-10-04 A | 2010-11-08 A | 8200CCF672, 8200TMF455 | 100% | 2011-01-29 | 2011-03-09 | Cal 1 | Other Skill Labour (Civil) [3456 h] | MWo | CC F | F4CSW | STAGE3 | 1 |  | 820 | F | C040 | 820_AB | 11.21 |  |  |
| 8200CCF704 |  | Trial Trench to Expose Pile Head & Utilities |  | 25d | 2010-11-08 A | 2010-12-06 A | 8200CCF702 FS+106d | 100% | 2011-06-21 | 2011-07-22 | Cal 1 | Other Skill Labour (Civil) [480 h]; Plant Operator [80 h]; Backhoe [10 h] | MWo | CC F | F4CSW | STAGE3 | 1 |  | 820 | F | C020 | 820_AB | 11.21 | RRIW |  |
| 8200CCF804 |  | Divert 225D Stormwater Drain (SD208) |  | 53d | 2010-12-07 A | 2011-02-15 A | 8200CCF748a | 100% | 2011-06-21 | 2011-08-26 | Cal 1 | Other Skill Labour (Civil) [1440 h]; Plant Operator [288 h]; Backhoe [36 h] | MWo | CC F | F4CSW | STAGE3 | UTILITY |  | 820 | F | C020 | 820_AB | 11.21 | UTD |  |
| 8200CCF748 |  | Divert Existing 1400D Watermain (FW204) |  | 63d | 2011-03-24 A | 2011-06-20 A | 8200CCF702, 8200CCF704 SS | 100% | 2011-06-21 | 2011-09-07 | Cal 1 | Other Skill Labour (Civil) [3360 h]; Plant Operator [840 h]; Mobile Crane [35 h]; Backhoe [70 h] | MWo | CC F | F4CSW | STAGE3 | UTILITY |  | 820 | F | C020 | 820_AB | 11.21 | UTD |  |
| 8200CCF748a |  | Divert 450D Saltwater Main (SW201) |  | 22d | 2011-06-10 A | 2011-07-30 A | 8200CCF748 | 100% | 2011-06-21 | 2011-07-18 | Cal 1 | Other Skill Labour (Civil) [2880 h]; Plant Operator [240 h]; Backhoe [30 h] | MWo | CC F | F4CSW | STAGE3 | UTILITY |  | 820 | F | C020 | 820_AB | 11.21 | UTD | 12mL |
| 8200CCF748b |  | Divert 1200D Stormwater Main (SD207) |  | 36d | 2011-07-14 A | 2011-08-29 A | 8200CCF748a FS-3d, 8200CCF748 | 100% | 2011-08-31 | 2011-10-17 | Cal 1 | Mobile Crane [48 h]; Backhoe [96 h]; Other Skill Labour (Civil) [3456 h]; Plant Operator [1152 h] | MWo | CC F | F4CSW | STAGE3 | UTILITY |  | 820 | F | C020 | 820_AB | 11.21 | UTD | 20mL |

| ID | WBS | Activity | Type | Duration | Start | Finish | Predecessors | Complete | Planned start | Planned finish | Constraint | Calendar | Resources | Responsible by | LEVEL 1 | LEVEL 2 | LEVEL 3 | SUMMARY | Contracts | Cost Centre | Works Area | Phases of Works | 820_As-built | Classification of Works | Production Rate | QUANTITY |
| --- | --- | --- | --- | --- | --- | --- | --- | --- | --- | --- | --- | --- | --- | --- | --- | --- | --- | --- | --- | --- | --- | --- | --- | --- | --- | --- |
|  | 30 | **Stage 1** |  |  | 2010-05-26 | 2011-12-15 |  |  |  |  |  |  |  |  |  |  |  |  |  |  |  |  |  |  |  |  |
| 8200CCF654 |  | Survey Existing Piles & Underground Utilities |  | 95d | 2010-05-26 A | 2010-09-25 A | 8200CCF650 | 100% | 2011-01-08 | 2011-05-13 |  | Cal 1 |  | MWo | CC F | F4CSW | STAGE1 | 1 | 820 | F | 11.21 | C020 | 820_AB |  |  |  |
| 8200CCF652 |  | Tree Transplant Complete by 801 Designated Contractor | milestone | 0d | 2010-09-22 A | 2010-09-22 A |  | 100% | 2011-02-28 | 2011-02-28 | finish on or after 2010-09-22 |  |  | MWo | CC F | F4CSW | STAGE1 | 1 | 820 | F | 11.21 |  | 820_AB |  |  |  |
| 8200CCF650 |  | Access Date for Works Area 11.22 | milestone | 0d | 2010-11-08 A | 2010-11-08 A | 8200AC1160 SS | 100% | 2011-02-28 | 2011-02-28 |  |  |  | MWo | CC F | F4CSW | STAGE1 | 1 | 820 | F | 11.21 |  | 820_AB |  |  |  |
| 8200CCF656 |  | Expose the Existing Pile Head |  | 149d | 2010-12-25 A | 2011-07-13 A | 8200MTF375, 8200MTF360, 8200CCF652, 8200CCF654, 8200CCF650 | 100% | 2011-05-21 | 2011-11-25 |  | Cal 1 | Plant Operator [96 h]; Other Skill Labour (Civil) [3120 h]; Backhoe [24 h] | MWo | CC F | F4CSW | STAGE1 | 1 | 820 | F | 11.21 |  | 820_AB | RRIW |  |  |
| 8200CCF658 |  | Remove Existing Vertical Pile 24H (DT) |  | 55d | 2011-03-28 A | 2011-06-10 A | 8200CCF656 SS+48d | 100% | 2011-06-21 | 2011-08-29 |  | Cal 1 | Pile Removal [1 Nos]; Plant Operator [320 h]; Other Skill Labour (Civil) [960 h]; Pile Removal rig [20]; Mobile Crane [20 h] | MWo | CC F | F4CSW | STAGE1 | PILEREM | 820 | F | 11.21 |  | 820_AB | RRIW | UT | 1no. |
| 8200CCF660 |  | Backfill Existing Pile 24H |  | 4d | 2011-06-11 A | 2011-06-14 A | 8200CCF658 | 100% | 2011-07-16 | 2011-07-21 |  | Cal 1 | Plant Operator [32 h]; Other Skill Labour (Civil) [96 h]; Pile Removal rig; Mobile Crane [2 h] | MWo | CC F | F4CSW | STAGE1 | PILEREM | 820 | F | 11.21 |  | 820_AB | RRIW |  |  |
| 8200CCF662 |  | Remove Existing Raking Pile 24G (DT) |  | 29d | 2011-06-14 A | 2011-07-20 A | 8200CCF660 | 100% | 2011-06-21 | 2011-07-27 |  | Cal 1 | Pile Removal [1 Nos]; Plant Operator [320 h]; Other Skill Labour (Civil) [960 h]; Pile Removal rig [20]; Mobile Crane [20 h] | MWo | CC F | F4CSW | STAGE1 | PILEREM | 820 | F | 11.21 |  | 820_AB | RRIW | UT | 1no. |
| 8200CCF664 |  | Backfill Existing Pile 24G |  | 3d | 2011-07-21 A | 2011-07-23 A | 8200CCF662, 8200CCF660 | 100% | 2011-08-31 | 2011-09-02 |  | Cal 1 | Plant Operator [16 h]; Other Skill Labour (Civil) [96 h]; Mobile Crane [2 h] | MWo | CC F | F4CSW | STAGE1 | PILEREM | 820 | F | 11.21 |  | 820_AB | RRIW |  |  |
| 8200CCF666 |  | Remove Existing Raking Pile 23F (DT) |  | 28d | 2011-08-06 A | 2011-09-05 A | 8200CCF664, 8200CCF656, 8200CCF682b | 100% | 2011-08-31 | 2011-10-07 |  | Cal 1 | Pile Removal [1 Nos]; Plant Operator [320 h]; Other Skill Labour (Civil) [960 h]; Pile Removal rig [20]; Mobile Crane [20 h] | MWo | CC F | F4CSW | STAGE1 | PILEREM | 820 | F | 11.21 |  | 820_AB | RRIW | UT | 1no. |
| 8200CCF892 |  | Remove Existing Vertical Pile 23E (DT) |  | 101d | 2011-08-11 A | 2011-12-14 A | 8200CCF668 | 100% | 2011-09-12 | 2012-01-14 |  | Cal 1 | Pile Removal [1 Nos]; Other Skill Labour (Civil) [1152 h]; Plant Operator [384 h]; Mobile Crane [24 h]; Pile Removal rig [24] | MWo | CC F | F4CSW | STAGE3 | PILEREM | 820 | F | 11.21 |  | 820_AB | RRIW | DT | 1no. |
| 8200CCF657 |  | Expose and Verification of Pile 24E (DT) |  | 5d | 2011-09-05 A | 2011-09-11 A | 8200CCF748, 8200CCF656, 8200CCF748b, 8200CCF804 | 100% | 2012-01-20 | 2012-01-28 |  | Cal 1 | Other Skill Labour (Civil); Plant Operator; Mobile Crane | MWo | CC F | F4CSW | STAGE3 | PILEREM | 820 | F | 11.21 |  | 820_AB | RRIW | DT | 1no. |
| 8200CCF668 |  | Backfill Existing Pile 23F |  | 2d | 2011-09-06 A | 2011-09-07 A | 8200CCF664, 8200CCF666 | 100% | 2012-01-27 | 2012-01-28 |  | Cal 1 | Plant Operator [16 h]; Other Skill Labour (Civil) [96 h]; Mobile Crane [2 h] | MWo | CC F | F4CSW | STAGE1 | PILEREM | 820 | F | 11.21 |  | 820_AB | RRIW |  |  |
| 8200CCF894a |  | Remove Existing Raking Pile 24F (DT) |  | 22d | 2011-09-07 A | 2011-10-08 A | 8200CCF892, 8200CCF704, 8200MTF375, 8200CCF893, 8200CCF748b FS+9d | 100% | 2012-02-10 | 2012-03-06 |  | Cal 1 | Pile Removal [1 Nos]; Other Skill Labour (Civil) [1584 h]; Plant Operator [528 h]; Mobile Crane [33 h]; Pile Removal rig [33] | MWo | CC F | F4CSW | STAGE3 | PILEREM | 820 | F | 11.21 |  | 820_AB | RRIW | DT | 1no. |
| 8200CCF894b |  | Backfill Existing Pile 24F |  | 2d | 2011-10-10 A | 2011-10-11 A | 8200CCF894a FF, 8200CCF894a | 100% | 2012-03-17 | 2012-03-19 |  | Cal 1 | Other Skill Labour (Civil) [96 h]; Plant Operator [16 h]; Mobile Crane [2 h] | MWo | CC F | F4CSW | STAGE3 | PILEREM | 820 | F | 11.21 |  | 820_AB | RRIW |  |  |
| 8200CCF893 |  | Backfill Existing Pile 23E |  | 2d | 2011-12-14 A | 2011-12-15 A | 8200CCF892 | 100% | 2012-02-07 | 2012-02-08 |  | Cal 1 | Other Skill Labour (Civil) [96 h]; Plant Operator [16 h]; Mobile Crane [2 h] | MWo | CC F | F4CSW | STAGE3 | PILEREM | 820 | F | 11.21 |  | 820_AB | RRIW |  |  |
|  | 1 | **Utilities Diversion (UT)** |  |  | 2010-10-20 | 2012-07-18 |  |  |  |  |  |  |  |  |  |  |  |  |  |  |  |  |  |  |  |  |
| 8200CCF672 |  | Implement TTM (Footpath Closure) |  | 34d | 2010-10-20 A | 2010-11-27 A | 8200TMF420 | 100% | 2011-01-08 | 2011-02-21 |  | Cal 1 | Other Skill Labour (Civil) [1728 h] | MWo | CC F | F4CSW | STAGE2 | 1 | 820 | F | 11.21 | C040 | 820_AB | UTD |  |  |
| 8200CCF674 |  | Trial Trench to Expose U/G Utilities |  | 14d | 2010-11-29 A | 2010-12-14 A | 8200CCF672 FS+153d | 100% | 2011-06-21 | 2011-07-07 |  | Cal 1 | Plant Operator [104 h]; Other Skill Labour (Civil) [1248 h]; Backhoe [13 h] | MWo | CC F | F4CSW | STAGE2 | 1 | 820 | F | 11.21 | C020 | 820_AB | UTD |  |  |
| 8200CCF676 |  | Divert Existing Gas Main 315D & 400D (GAS204&205) |  | 18d | 2011-08-16 A | 2011-09-07 A | 8200CCF748 FS+5d, 8200CCF674 | 100% | 2011-08-31 | 2011-09-23 |  | Cal 1 | Plant Operator [128 h]; Other Skill Labour (Civil) [768 h]; Backhoe [16 h] | MWo | CC F | F4CSW | STAGE2 | UTILITY | 820 | F | 11.21 | C020 | 820_AB | UTD |  | 30mL+35mL |
| 8200CCF678 |  | Slew TelecomCable(CATV205+HGC203+WTT204+PCCW202) |  | 10d | 2011-09-08 A | 2011-09-22 A | 8200CCF676, 8200CCF676 FF | 100% | 2012-01-27 | 2012-02-07 |  | Cal 1 | Plant Operator [80 h]; Other Skill Labour (Civil) [960 h]; Backhoe [10 h] | MWo | CC F | F4CSW | STAGE2 | UTILITY | 820 | F | 11.21 | C020 | 820_AB | UTD |  |  |
| 8200CCF680 |  | Slew CLP Cable (11kV-CLP213) |  | 12d | 2011-09-08 A | 2011-09-22 A | 8200CCF676, 8200CCF678 SS | 100% | 2012-01-27 | 2012-02-09 |  | Cal 1 | Plant Operator [80 h]; Other Skill Labour (Civil) [480 h]; Backhoe [10 h] | MWo | CC F | F4CSW | STAGE2 | UTILITY | 820 | F | 11.21 | C020 | 820_AB | UTD |  | 30mL+36mL |
| 8200CCF680a |  | Slew CLP Cable (400kV-CLP214) |  | 26d | 2012-06-28 A | 2012-07-18 A | 8200CCF680, 8200CCF684 SS | 100% | 2012-11-22 | 2012-12-21 |  | Cal 1 | Plant Operator [256 h]; Other Skill Labour (Civil) [1536 h]; Backhoe [32 h] | MWo | CC F | F4CSW | STAGE2 | UTILITY | 820 | F | 11.21 | C020 | 820_AB | UTD |  | 30mL+36mL |
|  | 40 | **Stage 2** |  |  | 2011-07-23 | 2013-05-04 |  |  |  |  |  |  |  |  |  |  |  |  |  |  |  |  |  |  |  |  |
| 8200CCF682a |  | Remove Existing Pile 23G (UT) |  | 11d | 2011-07-23 A | 2011-08-02 A | 8200CCF748a FS-18d, 8200CCF804, 8200CCF660, 8200CCF748 | 100% | 2011-06-21 | 2011-07-04 |  | Cal 1 | Pile Removal [1 Nos]; Other Skill Labour (Civil) [1152 h]; Plant Operator [384 h]; Mobile Crane [24 h]; Pile Removal rig [24] | MWo | CC F | F4CSW | STAGE3 | PILEREM | 820 | F | 11.21 |  | 820_AB | RRIW | DT | 1no. |
| 8200CCF682b |  | Backfill Existing Pile 23G |  | 2d | 2011-08-03 A | 2011-08-06 A | 8200CCF682a FS-1d | 100% | 2011-08-31 | 2011-09-01 |  | Cal 1 | Other Skill Labour (Civil) [96 h]; Plant Operator [16 h]; Mobile Crane [2 h] | MWo | CC F | F4CSW | STAGE3 | PILEREM | 820 | F | 11.21 |  | 820_AB | RRIW |  |  |
| 8200CCF688 |  | Remove Existing Pile 21L (UT) |  | 71d | 2012-01-06 A | 2012-04-05 A | 8200CCF682b | 100% | 2012-04-14 | 2012-07-17 |  | Cal 1 | Mobile Crane [24 h]; Pile Removal [1 Nos]; Plant Operator [384 h]; Other Skill Labour (Civil) [1152 h]; Pile Removal rig [24] | MWo | CC F | F4CSW | STAGE2 | PILEREM | 820 | F | 11.21 |  | 820_AB | RRIW | UT | 1no. |
| 8200CCF690 |  | Backfill Existing Pile 21L |  | 2d | 2012-04-11 A | 2012-04-13 A | 8200CCF688 | 100% | 2012-11-19 | 2012-11-20 |  | Cal 1 | Plant Operator [32 h]; Other Skill Labour (Civil) [96 h]; Mobile Crane [2 h] | MWo | CC F | F4CSW | STAGE2 | PILEREM | 820 | F | 11.21 |  | 820_AB | RRIW |  |  |
| 8200CCF683a |  | Remove Existing Pile 20E (UT) |  | 29d | 2012-04-16 A | 2012-05-15 A | 8200CCF686 FS+1d, 8200CCF680 | 100% | 2012-12-13 | 2013-01-18 |  | Cal 1 | Pile Removal [1 Nos]; Other Skill Labour (Civil) [1152 h]; Plant Operator [384 h]; Mobile Crane [24 h]; Pile Removal rig [24] | MWo | CC F | F4CSW | STAGE3 | PILEREM | 820 | F | 11.21 |  | 820_AB | RRIW | DT | 1no. |
| 8200CCF692 |  | Remove Existing Pile 20J (UT) |  | 29d | 2012-05-14 A | 2012-06-26 A | 8200CCF683b FS+1d, 8200CCF680a | 100% | 2013-01-23 | 2013-02-28 |  | Cal 1 | Pile Removal [1 Nos]; Plant Operator [384 h]; Other Skill Labour (Civil) [2304 h]; Pile Removal rig [24]; Mobile Crane [24 h] | MWo | CC F | F4CSW | STAGE2 | PILEREM | 820 | F | 11.21 |  | 820_AB | RRIW | UT | 1no. |
| 8200CCF683b |  | Backfill Existing Pile 20E |  | 2d | 2012-05-16 A | 2012-05-18 A | 8200CCF683a | 100% | 2013-01-19 | 2013-01-21 |  | Cal 1 | Plant Operator [16 h]; Mobile Crane [2 h]; Other Skill Labour (Civil) [96 h] | MWo | CC F | F4CSW | STAGE3 | PILEREM | 820 | F | 11.21 |  | 820_AB | RRIW |  |  |
| 8200CCF684 |  | Remove Existing Pile 23H (UT) |  | 15d | 2012-05-31 A | 2012-06-18 A | 8200CCF690 FS+1d | 100% | 2012-11-22 | 2012-12-08 |  | Cal 1 | Pile Removal [1 Nos]; Plant Operator [384 h]; Other Skill Labour (Civil) [1152 h]; Pile Removal rig [24]; Mobile Crane [24 h] | MWo | CC F | F4CSW | STAGE2 | PILEREM | 820 | F | 11.21 |  | 820_AB | RRIW | UT | 1no. |
| 8200CCF686 |  | Backfill Existing Pile 23H |  | 2d | 2012-06-19 A | 2012-06-21 A | 8200CCF684 | 100% | 2012-12-10 | 2012-12-11 |  | Cal 1 | Other Skill Labour (Civil) [96 h]; Mobile Crane [2 h] | MWo | CC F | F4CSW | STAGE2 | PILEREM | 820 | F | 11.21 |  | 820_AB | RRIW |  |  |
| 8200CCF694 |  | Backfill Existing Pile 20J |  | 2d | 2012-06-27 A | 2012-06-28 A | 8200CCF692 | 100% | 2013-03-01 | 2013-03-02 |  | Cal 1 | Plant Operator [16 h]; Other Skill Labour (Civil) [96 h]; Mobile Crane [2 h] | MWo | CC F | F4CSW | STAGE2 | PILEREM | 820 | F | 11.21 |  | 820_AB | RRIW |  |  |
| 8200CCF696 |  | Remove Existing Pile 19E (UT) |  | 30d | 2012-07-19 A | 2012-09-08 A | 8200CCF694 FS+1d | 100% | 2013-03-05 | 2013-04-13 |  | Cal 1 | Pile Removal [1 Nos]; Plant Operator [384 h]; Other Skill Labour (Civil) [1152 h]; Mobile Crane [24 h]; Pile Removal rig [24] | MWo | CC F | F4CSW | STAGE2 | PILEREM | 820 | F | 11.21 |  | 820_AB | RRIW | UT | 1no. |
| 8200CCF698 |  | Backfill Existing Pile 19E |  | 2d | 2012-09-10 A | 2012-09-12 A | 8200CCF696 | 100% | 2013-04-15 | 2013-04-16 |  | Cal 1 | Plant Operator [16 h]; Other Skill Labour (Civil) [96 h]; Mobile Crane [2 h] | MWo | CC F | F4CSW | STAGE2 | PILEREM | 820 | F | 11.21 |  | 820_AB | RRIW |  |  |
| 8200CCF907 |  | Reinstatement of Slewed CLP Cable (400kV - CLP214) |  | 28d | 2013-04-02 A | 2013-05-04 A | 8200CCE675 SS, 8200CCF698 FS+2d | 100% | 2013-04-02 | 2013-05-08 |  | Cal 1 | Mobile Crane [2 h]; Plant Operator [16 h]; Other Skill Labour (Civil) [96 h] | MWo | CC F | F4CSW | STAGE2 | PILEREM | 820 | F | 11.21 |  | 820_AB | RRIW |  |  |

| ID | WBS | Activity | Type | Duration | Start | Finish | Predecessors | Complete | Planned start | Planned finish | Calendar | Responsible by | LEVEL 1 | LEVEL 2 | LEVEL 3 | Cost Centre | 820_As-built | Contracts | Phases of Works | SUMMARY | Responsible (bm makes Global) |
| --- | --- | --- | --- | --- | --- | --- | --- | --- | --- | --- | --- | --- | --- | --- | --- | --- | --- | --- | --- | --- | --- |
|  | 2 | **Reinstatement works** |  |  |  |  |  |  |  |  |  |  |  |  |  |  |  |  |  |  |  |
|  | 60 | **Completion** |  |  | 2012-01-13 | 2015-04-30 |  |  |  |  |  |  |  |  |  |  |  |  |  |  |  |
| 8200CCF909b |  | Prepare & Submit Draft As-built Drawings |  | 24d | 2012-01-13 A | 2015-04-30 A |  | 100% | 2012-01-13 | 2012-02-13 | Cal 3 | MWo | CC F | F4CSW | O&M AsB | F | 820_AB |  |  |  |  |
| 8200CCF909c |  | Prepare & Submit As-built Drawings |  | 24d | 2012-01-13 A | 2015-03-13 A | 8200CCF909b | 100% | 2012-01-13 | 2012-02-13 | Cal 3 | MWo | CC F | F4CSW | O&M AsB | F | 820_AB |  |  |  |  |
|  | 60 | **F5 Pile Removal for Demolished FMO Market Pier B** |  |  | 2010-05-17 | 2015-08-11 |  |  |  |  |  |  |  |  |  |  |  |  |  |  |  |
|  | 10 | **Temp. Works Design Submission** |  |  | 2010-10-25 | 2011-03-30 |  |  |  |  |  |  |  |  |  |  |  |  |  |  |  |
| 8200DSF450z |  | Temp. Works Design Preparation |  | 28d | 2010-10-25 A | 2010-11-25 A | 8200KD1020 FS+80d | 100% | 2011-06-20 | 2011-07-17 |  | KKw | CC F | FMO PIE | TEMPWKD | F | 820_AB | 820 | C010 |  |  |
| 8200DSF455z |  | Temp. Works Design Submit to MTR | milestone | 0d | 2010-11-25 A | 2010-11-25 A | 8200DSF450z | 100% | 2011-07-18 | 2011-07-18 | Cal 3 | KKw | CC F | FMO PIE | TEMPWKD | F | 820_AB | 820 | C010 | 1 |  |
| 8200DSF460z |  | Temp. Works Design Comment by MTR |  | 28d | 2010-11-26 A | 2011-01-27 A | 8200DSF455z FF, 8200DSF455z | 100% | 2011-06-20 | 2011-07-17 |  | KKw | CC F | FMO PIE | TEMPWKD | F | 820_AB | 820 | C010 | 1 |  |
| 8200DSF465z |  | Temp. Works Design Re-submission Preparation |  | 18d | 2011-01-28 A | 2011-03-07 A | 8200DSF460z | 100% | 2011-06-20 | 2011-07-11 | Cal 3 | KKw | CC F | FMO PIE | TEMPWKD | F | 820_AB | 820 | C010 | 1 |  |
| 8200DSF470z |  | Temp. Works Design Comment & Approval by MTR |  | 28d | 2011-03-08 A | 2011-03-30 A | 8200DSF465z FF, 8200DSF465z | 100% | 2011-06-20 | 2011-07-17 |  | KKw | CC F | FMO PIE | TEMPWKD | F | 820_AB | 820 | C010 | 1 |  |
| 8200DSF475z |  | Issue for Construction | milestone | 0d | 2011-03-30 A | 2011-03-30 A | 8200DSF470z, 8200DSF460z FS+1d | 100% | 2011-06-20 | 2011-06-20 | Cal 3 | KKw | CC F | FMO PIE | TEMPWKD | F | 820_AB | 820 | C010 | 1 |  |
|  | 20 | **Method Statement Submission and Approval** |  |  | 2010-10-04 | 2011-01-31 |  |  |  |  |  |  |  |  |  |  |  |  |  |  |  |
| 8200MTF380 |  | MS Preparation |  | 32d | 2010-10-04 A | 2010-11-04 A | 8200KD1020 FS+24d | 100% | 2011-02-28 | 2011-03-31 |  |  | CC F | FMO PIE | MS PREP | F | 820_AB | 820 | C010 | 1 | ARo |
| 8200MTF385 |  | MS Submission to MTR | milestone | 0d | 2010-11-04 A | 2010-11-04 A | 8200KD1020, 8200MTF380 | 100% | 2011-03-23 | 2011-03-23 | Cal 3 |  | CC F | FMO PIE | MS PREP | F | 820_AB | 820 | C010 | 1 | ARo |
| 8200MTF390 |  | MS Comment by MTR |  | 11d | 2010-11-05 A | 2010-11-15 A | 8200MTF385 | 100% | 2011-03-24 | 2011-04-03 |  |  | CC F | FMO PIE | MS PREP | F | 820_AB | 820 | C010 | 1 | ARo |
| 8200MTF395 |  | MS Re-submission Preparation |  | 5d | 2010-11-16 A | 2011-01-18 A | 8200MTF390 | 100% | 2011-04-21 | 2011-04-29 | Cal 3 |  | CC F | FMO PIE | MS PREP | F | 820_AB | 820 | C010 | 1 | ARo |
| 8200MTF400 |  | MS Comment & Approval by MTR |  | 13d | 2011-01-19 A | 2011-01-31 A | 8200MTF395, 8200MTF395 FF | 100% | 2011-05-18 | 2011-05-30 |  |  | CC F | FMO PIE | MS PREP | F | 820_AB | 820 | C010 | 1 | ARo |
| 8200MTF405 |  | Issue for Construction | milestone | 0d | 2011-01-31 A | 2011-01-31 A | 8200MTF400, 8200MTF390 FS+1d | 100% | 2011-06-14 | 2011-06-14 | Cal 3 |  | CC F | FMO PIE | MS PREP | F | 820_AB | 820 | C010 | 1 | ARo |
|  | 30 | **TTM Scheme Submission & Approval** |  |  | 2010-05-17 | 2010-08-16 |  |  |  |  |  |  |  |  |  |  |  |  |  |  |  |
| 8200TMF500 |  | Prepare Temporary Traffic Management |  | 13d | 2010-05-17 A | 2010-06-02 A | 8200KD1020 | 100% | 2011-02-28 | 2011-03-14 | Cal 1 | HCh | CC F | FMO PIE | TTMS/AP | F | 820_AB | 820 | C040 | TTMS AP |  |
| 8200TMF505 |  | TTM reviewed by SLG |  | 30d | 2010-06-03 A | 2010-07-02 A | 8200TMF500 | 100% | 2011-03-26 | 2011-04-24 |  | HCh | CC F | FMO PIE | TTMS/AP | F | 820_AB | 820 | C040 | TTMS AP |  |
| 8200TMF510 |  | Resubmit TTM |  | 1d | 2010-06-03 A | 2010-06-03 A | 8200TMF505 | 100% | 2011-02-28 | 2011-02-28 | Cal 1 | HCh | CC F | FMO PIE | TTMS/AP | F | 820_AB | 820 | C040 | TTMS AP |  |
| 8200TMF515 |  | TTM reviewed by SLG |  | 30d | 2010-06-03 A | 2010-07-02 A | 8200TMF510 | 100% | 2011-04-30 | 2011-05-29 |  | HCh | CC F | FMO PIE | TTMS/AP | F | 820_AB | 820 | C040 | TTMS AP |  |
| 8200TMF525 |  | XP Application & Approval |  | 30d | 2010-06-09 A | 2010-07-08 A | 8200TMF505 SS+30d | 100% | 2011-04-25 | 2011-05-24 |  | HCh | CC F | FMO PIE | TTMS/AP | F | 820_AB | 820 | C040 |  |  |
| 8200TMF530 |  | Implement TTM | milestone | 0d | 2010-07-19 A | 2010-07-19 A | 8200TMF520, 8200TMF525 | 100% | 2011-02-28 | 2011-02-28 |  | HCh | CC F | FMO PIE | TTMS/AP | F | 820_AB | 820 | C040 | TTMS AP |  |
| 8200TMF520 |  | Notification to RMO |  | 4d | 2010-08-13 A | 2010-08-16 A | 8200TMF515 | 100% | 2011-05-24 | 2011-05-27 |  | HCh | CC F | FMO PIE | TTMS/AP | F | 820_AB | 820 | C040 | TTMS AP |  |

Notes:
- 8200DSF450z: Anticipated Problems: No temp.work design is required (Tommy)

| ID | WBS | Activity | Type | Duration | Start | Finish | Predecessors | Complete | Remaining | Planned start | Planned finish | Total float | Free float | Constraint | Calendar | Resources | Responsible by | LEVEL 1 | LEVEL 2 | LEVEL 3 | SUMMARY | Contracts | Cost Centre | Works Area | 820_As-built | Phases of Works | Classification of Works | Production Rate | QUANTITY | Rate | Priority A | TBM DT s | TBM DT f | Sum1 | TBM UT f | TBM UT s |
| --- | --- | --- | --- | --- | --- | --- | --- | --- | --- | --- | --- | --- | --- | --- | --- | --- | --- | --- | --- | --- | --- | --- | --- | --- | --- | --- | --- | --- | --- | --- | --- | --- | --- | --- | --- | --- |
|  | 40 | **Construction** |  |  | 2010-07-19 | 2015-08-11 |  |  |  |  |  |  |  |  |  |  |  |  |  |  |  |  |  |  |  |  |  |  |  |  |  |  |  |  |  |  |
| 8200CCF754 |  | Acccess Dates for Works Area 11.27 | milestone | 0d | 2010-07-19 A | 2010-07-19 A | 8200TMF530, 8200AC1280 | 100% |  | 2011-02-28 | 2011-02-28 |  |  |  | Cal 1 |  | MWo | CC F | FMO PIE | CONS | 1 | 820 | F | 11.27 | 820_AB |  |  |  |  |  |  |  |  |  |  |  |
| 8200CCF756 |  | TTM Implementation |  | 25d | 2010-07-19 A | 2010-08-18 A | 8200MTF405, 8200CCF754, 8200TMF530, 8200AC1280, 8200TME140 | 100% |  | 2011-02-28 | 2011-03-28 |  |  |  | Cal 1 |  | MWo | CC F | FMO PIE | CONS | 1 | 820 | F | 11.27 | 820_AB | C040 |  |  |  |  |  |  |  |  |  |  |
| 8200CCF758 |  | Relocation of Toilet/Bus Operator Office |  | 24d | 2010-08-19 A | 2010-09-18 A | 8200CCF756 | 100% |  | 2011-02-28 | 2011-03-26 |  |  | finish on or before 2011-01-28 | Cal 1 | Other Skill Labour (Civil) [2304 h]; Plant Operator [576 h]; Mobile Crane [24 h]; Backhoe [48 h] | MWo | CC F | FMO PIE | CONS | 1 | 820 | F | 11.27 | 820_AB | C040 | RRIW |  |  |  |  |  |  |  |  |  |
| 8200CCF760 |  | Bus Stop Modification Stage 1 |  | 13d | 2010-09-15 A | 2010-09-30 A | 8200CCF756 | 100% |  | 2011-02-28 | 2011-03-14 |  |  |  | Cal 1 | Other Skill Labour (Civil) [3456 h]; Plant Operator [864 h]; Mobile Crane [36 h]; Backhoe [72 h] | MWo | CC F | FMO PIE | CONS | 1 | 820 | F | 11.27 | 820_AB | C040 | RRIW |  |  |  |  |  |  |  |  |  |
| 8200CCF762 |  | Bus Stop Modification Stage 2 |  | 5d | 2010-10-02 A | 2010-10-07 A | 8200CCF760 | 100% |  | 2011-02-28 | 2011-03-04 |  |  | finish on or before 2011-01-28 | Cal 1 | Other Skill Labour (Civil) [3456 h]; Plant Operator [864 h]; Mobile Crane [36 h]; Backhoe [72 h] | MWo | CC F | FMO PIE | CONS | 1 | 820 | F | 11.27 | 820_AB | C040 | RRIW |  |  |  |  |  |  |  |  |  |
| 8200CCF764 |  | Road Kerb Removal |  | 11d | 2010-10-08 A | 2010-10-21 A | 8200CCF762, 8200CCF756 | 100% |  | 2011-02-28 | 2011-03-11 |  |  |  | Cal 1 | Other Skill Labour (Civil) [576 h]; Plant Operator [1.92 h]; Backhoe [24 h] | MWo | CC F | FMO PIE | CONS | 1 | 820 | F | 11.27 | 820_AB | C040 | RRIW |  |  |  |  |  |  |  |  |  |
| 8200CCF774 |  | Expose the Existing Pile Heads |  | 18d | 2010-10-25 A | 2010-11-13 A |  | 100% |  | 2011-04-21 | 2011-05-18 |  |  |  | Cal 1 | Other Skill Labour (Civil) [768 h]; Plant Operator [256 h]; Backhoe [32 h] | MWo | CC F | FMO PIE | CONS | 1 | 820 | F | 11.27 | 820_AB |  | RRIW | 230 cu.m./d | 16no | 2d/no.x2 |  |  |  |  |  |  |
| 8200sum560 |  | FMO Pier B Piles Removal (4nos.) (DT) | level of effort | 395d | 2010-10-25 A | 2011-07-09 A | 8200CCF774 SS | 100% |  | 2011-05-27 | 2012-06-24 |  |  |  |  |  |  |  |  |  |  |  |  |  | 820_AB |  |  |  |  |  | 4 | 2012-01-29 | 2012-01-29 | S1 |  |  |
| 8200CCF766 |  | Trial Trench for Expose U/G Utilities |  | 20d | 2010-10-30 A | 2010-11-20 A | 8200CCF758, 8200CCF764 | 100% |  | 2011-02-28 | 2011-03-22 |  |  |  | Cal 1 | Other Skill Labour (Civil) [576 h]; Plant Operator [96 h]; Backhoe [12 h] | MWo | CC F | FMO PIE | CONS | 1 | 820 | F | 11.27 | 820_AB | C020 | RRIW |  |  |  |  |  |  |  |  |  |
| 8200CCF776 |  | Backfill |  | 6d | 2010-11-15 A | 2010-11-20 A | 8200CCF774 | 100% |  | 2011-02-28 | 2011-03-05 |  |  |  | Cal 1 | Mobile Crane [14 h]; Other Skill Labour (Civil) [1344 h]; Plant Operator [112 h]; Backhoe [28 h] | MWo | CC F | FMO PIE | CONS | 1 | 820 | F | 11.27 | 820_AB |  | RRIW | 0.6m/day | 8mD | 0.6mD/d |  |  |  |  |  |  |
| 8200CCF778 |  | 1 Vertical Pile Removal UT(3G) |  | 3d | 2010-11-22 A | 2010-11-24 A | 8200CCF766, 8200CCF776, 8200DSF475z | 100% |  | 2011-02-28 | 2011-03-02 |  |  |  | Cal 1 | Pile Removal [1 Nos]; Other Skill Labour (Civil) [576 h]; Plant Operator [192 h]; Mobile Crane [12 h]; Backhoe [12 h] | MWo | CC F | FMO PIE | CONS | PILEREM | 820 | F | 11.27 | 820_AB |  | RRIW | 3 day/pile | 4 Vertical | 20d/raking pile |  |  |  |  |  |  |
| 8200sum560a |  | FMO Pier B Piles Removal (5nos.) (UT) | level of effort | 267d | 2010-11-22 A | 2011-04-15 A | 8200CCF778 SS | 100% |  | 2011-05-27 | 2012-02-17 |  |  |  |  |  |  |  |  |  |  |  |  |  | 820_AB |  |  |  |  |  | 4 |  |  | S1 | 2013-03-10 | 2013-03-10 |
| 8200CCF778c |  | 1 Vertical Pile Removal UT(1H) |  | 12d | 2010-11-25 A | 2011-08-10 A | 8200CCF778b | 100% |  | 2011-08-31 | 2011-09-15 |  |  |  | Cal 1 | Pile Removal [1 Nos]; Other Skill Labour (Civil) [576 h]; Plant Operator [192 h]; Mobile Crane [12 h]; Backhoe [12 h] | MWo | CC F | FMO PIE | CONS | PILEREM | 820 | F | 11.27 | 820_AB |  | RRIW | 3 day/pile | 4 Vertical | 20d/raking pile |  |  |  |  |  |  |
| 8200CCF784 |  | 4 Raking Pile Removal DT(2Ja,2Ha,2Hb & 2Gb) |  | 80d | 2010-11-30 A | 2011-07-09 A | 8200sum560 FF, 8200CCF780 | 100% |  | 2011-08-31 | 2011-12-07 |  |  |  | Cal 1 | Pile Removal [4 Nos]; Other Skill Labour (Civil) [3840 h]; Plant Operator [1280 h]; Mobile Crane [80 h]; Backhoe [80 h] | MWo | CC F | FMO PIE | CONS | PILEREM | 820 | F | 11.27 | 820_AB |  | RRIW | 20 day/pile | 4 Raking | 3d/vert.pile,20d/rak |  |  |  |  |  |  |
| 8200CCF778b |  | 1 Vertical Pile Removal UT(3H) |  | 12d | 2010-12-15 A | 2011-05-11 A | 8200CCF778a FS+85d | 100% |  | 2011-08-31 | 2011-09-15 |  |  |  | Cal 1 | Pile Removal [1 Nos]; Other Skill Labour (Civil) [576 h]; Plant Operator [192 h]; Mobile Crane [12 h]; Backhoe [12 h] | MWo | CC F | FMO PIE | CONS | PILEREM | 820 | F | 11.27 | 820_AB |  | RRIW | 3 day/pile | 4 Vertical | 20d/raking pile |  |  |  |  |  |  |
| 8200CCF778a |  | 1 Vertical Pile Removal UT(1G) |  | 4d | 2010-12-18 A | 2010-12-23 A | 8200CCF778 | 100% |  | 2011-02-28 | 2011-03-03 |  |  |  | Cal 1 | Pile Removal [1 Nos]; Other Skill Labour (Civil) [576 h]; Plant Operator [192 h]; Mobile Crane [12 h]; Backhoe [12 h] | MWo | CC F | FMO PIE | CONS | PILEREM | 820 | F | 11.27 | 820_AB |  | RRIW | 3 day/pile | 4 Vertical | 20d/raking pile |  |  |  |  |  |  |
| 8200CCF780 |  | 1 Raking Pile Removal UT (2Fa) |  | 20d | 2011-03-30 A | 2011-04-15 A | 8200CCF778c, 8200sum560a FF | 100% |  | 2011-08-31 | 2011-09-26 |  |  |  | Cal 1 | Pile Removal [1 Nos]; Other Skill Labour (Civil) [960 h]; Plant Operator [320 h]; Mobile Crane [20 h]; Backhoe [20 h] | MWo | CC F | FMO PIE | CONS | PILEREM | 820 | F | 11.27 | 820_AB |  | RRIW | 20 day/pile | 1 Raking | 20d/raking pile |  |  |  |  |  |  |
| 8200CCF786 |  | PTI Reinstatement |  | 80d | 2014-02-21 A | 2015-08-11 | 8200CCF784 | 30% | 56d | 2014-02-21 | 2014-06-05 | -72d | 0d |  | Cal 1 | Other Skill Labour (Civil) [2400 h]; Plant Operator [640 h]; Backhoe [640 h] | MWo | CC F | FMO PIE | CONS | 1 | 820 | F | 11.27 | 820_AB |  | RRIW | 0.6m/day |  |  |  |  |  |  |  |  |
|  | 50 | **Completion** |  |  | 2012-03-15 | 2012-04-30 |  |  |  |  |  |  |  |  |  |  |  |  |  |  |  |  |  |  |  |  |  |  |  |  |  |  |  |  |  |  |
| 8200CCF787 |  | Prepare & Submit Draft As-built Drawings (PTI) |  | 24d | 2012-03-15 A | 2012-04-30 A | 8200CCF786 | 100% |  | 2012-03-15 | 2012-04-16 |  |  |  | Cal 3 |  | MWo | CC F | F4CSW | O&M AsB |  |  | F |  | 820_AB |  |  |  |  |  |  |  |  |  |  |  |
| 8200CCF788 |  | Prepare & Submit As-built Drawings (PTI) |  | 24d | 2012-03-15 A | 2012-04-30 A | 8200CCF787 | 100% |  | 2012-03-15 | 2012-04-16 |  |  |  | Cal 3 |  | MWo | CC F | F4CSW | O&M AsB |  |  | F |  | 820_AB |  |  |  |  |  |  |  |  |  |  |  |
|  | 70 | **F6 Sham Shui Po Ferry Pier - Pile removal** |  |  | 2010-05-27 | 2014-06-28 |  |  |  |  |  |  |  |  |  |  |  |  |  |  |  |  |  |  |  |  |  |  |  |  |  |  |  |  |  |  |
|  | 10 | **Temp. Works Design Submission** |  |  | 2010-08-17 | 2010-11-12 |  |  |  |  |  |  |  |  |  |  |  |  |  |  |  |  |  |  |  |  |  |  |  |  |  |  |  |  |  |  |
| 8200DSF200 |  | Temp. Works Design Preparation |  | 31d | 2010-08-17 A | 2010-09-16 A | 8200KD1020 FS+90d | 100% |  | 2011-02-28 | 2011-03-30 |  |  |  |  |  |  | CC F | SSPPIER | TEMPWKD |  | 820 | F |  | 820_AB | C010 |  |  |  |  |  |  |  |  |  |  |
| 8200DSF210 |  | Temp. Works Design Comment by MTR |  | 114d | 2010-09-17 A | 2010-09-30 A | 8200DSF205 FF, 8200DSF205 | 100% |  | 2011-03-28 | 2011-07-19 |  |  |  |  |  |  | CC F | SSPPIER | TEMPWKD | 1 | 820 | F |  | 820_AB | C010 |  |  |  |  |  |  |  |  |  |  |
| 8200DSF205 |  | Temp. Works Design Submit to MTR | milestone | 0d | 2010-09-17 A | 2010-09-17 A | 8200DSF200 | 100% |  | 2011-03-28 | 2011-03-28 |  |  |  | Cal 3 |  |  | CC F | SSPPIER | TEMPWKD | 1 | 820 | F |  | 820_AB | C010 |  |  |  |  |  |  |  |  |  |  |
| 8200DSF215 |  | Temp. Works Design Re-submission Preparation |  | 20d | 2010-10-02 A | 2010-10-26 A | 8200DSF210 | 100% |  | 2011-04-26 | 2011-05-20 |  |  |  | Cal 3 |  |  | CC F | SSPPIER | TEMPWKD | 1 | 820 | F |  | 820_AB | C010 |  |  |  |  |  |  |  |  |  |  |
| 8200DSF220 |  | Temp. Works Design Comment & Approval by MTR |  | 17d | 2010-10-27 A | 2010-11-12 A | 8200DSF215 FF, 8200DSF215 | 100% |  | 2011-05-19 | 2011-06-04 |  |  |  |  |  |  | CC F | SSPPIER | TEMPWKD | 1 | 820 | F |  | 820_AB | C010 |  |  |  |  |  |  |  |  |  |  |
| 8200DSF225 |  | Issue for Construction | milestone | 0d | 2010-11-12 A | 2010-11-12 A | 8200DSF210 FS+1d, 8200DSF220 | 100% |  | 2011-06-15 | 2011-06-15 |  |  |  | Cal 3 |  |  | CC F | SSPPIER | TEMPWKD | 1 | 820 | F |  | 820_AB | C010 |  |  |  |  |  |  |  |  |  |  |

| ID | WBS | Activity | Type | Duration | Start | Finish | Predecessors | Complete | Planned start | Planned finish | Calendar | Resources | LEVEL 1 | LEVEL 2 | LEVEL 3 | SUMMARY | Responsible (bm makes Global) | Contracts | Cost Centre | Phases of Works | 820_As-built | Responsible by | Works Area | QUANTITY | Priority A | Sum1 | Classification of Works | TBM DT s | TBM DT f | Production Rate | Rate |
| --- | --- | --- | --- | --- | --- | --- | --- | --- | --- | --- | --- | --- | --- | --- | --- | --- | --- | --- | --- | --- | --- | --- | --- | --- | --- | --- | --- | --- | --- | --- | --- |
|  | 20 | **Method Statement Submission and Approval** |  |  | 2010-10-26 | 2011-05-04 |  |  |  |  |  |  |  |  |  |  |  |  |  |  |  |  |  |  |  |  |  |  |  |  |  |
| 8200MTF435 |  | MS Submission Preparation |  | 18d | 2010-10-26 A | 2010-11-15 A | 8200KD1020 FS+90d | 100% | 2011-03-16 | 2011-04-06 | Cal 3 |  | CC F | SSPPIER | MS PREP | 1 | ARo | 820 | F | C010 | 820_AB |  |  |  |  |  |  |  |  |  |  |
| 8200MTF440 |  | MS Submission to MTR | milestone | 0d | 2010-11-15 A | 2010-11-15 A | 8200MTF435, 8200KD1020 | 100% | 2011-04-13 | 2011-04-13 | Cal 3 |  | CC F | SSPPIER | MS PREP | 1 | ARo | 820 | F | C010 | 820_AB |  |  |  |  |  |  |  |  |  |  |
| 8200MTF445 |  | MS Comment by MTR |  | 10d | 2010-11-16 A | 2010-11-25 A | 8200MTF440, 8200MTF440 FF, 8200MTF435 | 100% | 2011-02-28 | 2011-03-09 |  |  | CC F | SSPPIER | MS PREP | 1 | ARo | 820 | F | C010 | 820_AB |  |  |  |  |  |  |  |  |  |  |
| 8200MTF450 |  | MS Re-submission Preparation |  | 41d | 2010-11-26 A | 2011-03-10 A | 8200MTF445 | 100% | 2011-02-28 | 2011-04-16 | Cal 3 |  | CC F | SSPPIER | MS PREP | 1 | ARo | 820 | F | C010 | 820_AB |  |  |  |  |  |  |  |  |  |  |
| 8200MTF455 |  | MS Comment & Approval by MTR |  | 155d | 2011-03-11 A | 2011-05-04 A | 8200MTF450, 8200MTF450 FF | 100% | 2011-02-28 | 2011-08-01 |  |  | CC F | SSPPIER | MS PREP | 1 | ARo | 820 | F | C010 | 820_AB |  |  |  |  |  |  |  |  |  |  |
| 8200MTF460 |  | Issue for Construction | milestone | 0d | 2011-05-04 A | 2011-05-04 A | 8200MTF445 FS+1d, 8200MTF455 | 100% | 2011-08-31 | 2011-08-31 | Cal 3 |  | CC F | SSPPIER | MS PREP | 1 | ARo | 820 | F | C010 | 820_AB |  |  |  |  |  |  |  |  |  |  |
|  | 30 | **TTM Scheme Submission & Approval** |  |  | 2010-05-27 | 2011-03-14 |  |  |  |  |  |  |  |  |  |  |  |  |  |  |  |  |  |  |  |  |  |  |  |  |  |
| 8200TMF600 |  | Prepare Temp.Traffic Mgmt for Tree Transplant |  | 37d | 2010-05-27 A | 2010-07-14 A | 8200KD1020 FS+15d | 100% | 2011-02-28 | 2011-04-13 | Cal 1 |  | CC F | SSPPIER | TTMS/AP | TTMS AP |  | 820 | F | C040 | 820_AB | EtW |  |  |  |  |  |  |  |  |  |
| 8200TMF605 |  | TTM Comment & Approval by Relevant Authorities |  | 30d | 2010-06-03 A | 2010-07-02 A | 8200TMF600 | 100% | 2011-04-14 | 2011-05-13 |  |  | CC F | SSPPIER | TTMS/AP | TTMS AP |  | 820 | F | C040 | 820_AB | EtW |  |  |  |  |  |  |  |  |  |
| 8200TMF610 |  | Notification to RMO |  | 32d | 2010-07-16 A | 2010-08-16 A | 8200TMF605 | 100% | 2011-07-08 | 2011-08-08 |  |  | CC F | SSPPIER | TTMS/AP | TTMS AP |  | 820 | F | C040 | 820_AB | EtW |  |  |  |  |  |  |  |  |  |
| 8200TMF615 |  | Implement TTM | milestone | 0d | 2011-03-14 A | 2011-03-14 A | 8200TMF605, 8200TMF610 | 100% | 2011-07-19 | 2011-07-19 |  |  | CC F | SSPPIER | TTMS/AP | TTMS AP |  | 820 | F | C040 | 820_AB | EtW |  |  |  |  |  |  |  |  |  |
|  | 40 | **Stage 0** |  |  | 2010-07-02 | 2011-04-26 |  |  |  |  |  |  |  |  |  |  |  |  |  |  |  |  |  |  |  |  |  |  |  |  |  |
| 8200CCF794 |  | Access Date for Works Area 11.21 | milestone | 0d | 2010-07-02 A | 2010-07-02 A | 8200TME160, 8200TMG210, 8200AC1140 SS | 100% | 2011-02-28 | 2011-02-28 |  |  | CC F | SSPPIER | STAGE0 | 1 |  | 820 | F |  | 820_AB | EtW | 11.21 |  |  |  |  |  |  |  |  |
| 8200CCF798 |  | Tree Transplanting |  | 31d | 2010-09-09 A | 2010-10-20 A | 8200CCF790 FF, 8200CCF792 FF, 8200CCF796, 8200CCF794 | 100% | 2011-10-06 | 2011-11-10 | Cal 1 | Other Skill Labour (Civil) [6912 h]; Plant Operator [1152 h]; Mobile Crane [144 h] | CC F | SSPPIER | STAGE0 | 1 |  | 820 | F |  | 820_AB | EtW | 11.21 | 160mL |  |  |  |  |  |  |  |
| 8200CCF790 |  | Group B TreeTransplant(T9746,U0019-24)Preparat'n |  | 41d | 2010-10-20 A | 2010-11-29 A | 8200TMF615 | 100% | 2011-07-20 | 2011-08-29 |  |  | CC F | SSPPIER | STAGE0 | 1 |  | 820 | F |  | 820_AB | EtW | 11.21 |  |  |  |  |  |  |  |  |
| 8200CCF792 |  | Group D Tree Transplant (U0023) Preparation |  | 41d | 2010-10-20 A | 2010-11-29 A | 8200TMF615 | 100% | 2011-07-20 | 2011-08-29 |  |  | CC F | SSPPIER | STAGE0 | 1 |  | 820 | F |  | 820_AB | EtW | 11.21 |  |  |  |  |  |  |  |  |
| 8200CCF796 |  | Stage 0 TTA |  | 27d | 2010-10-20 A | 2010-11-19 A | 8200CCF794 | 100% | 2011-02-28 | 2011-03-30 | Cal 1 |  | CC F | SSPPIER | STAGE0 | 1 |  | 820 | F | C040 | 820_AB | EtW | 11.21 | 60mL |  |  |  |  |  |  |  |
| 8200sum570 |  | Stage 0 Enabling Work | level of effort | 183d | 2010-10-20 A | 2011-04-20 A | 8200CCF796 SS | 100% | 2011-02-28 | 2011-08-29 |  |  |  |  |  |  |  |  |  |  | 820_AB |  |  |  | 4 | S1 |  |  |  |  |  |
| 8200CCF800 |  | Kerb & Footpath Removal |  | 29d | 2011-03-15 A | 2011-04-20 A | 8200CCF796 | 100% | 2011-03-29 | 2011-05-11 | Cal 1 | Other Skill Labour (Civil) [1152 h]; Plant Operator [192 h]; Backhoe [24 h] | CC F | SSPPIER | STAGE0 | 1 |  | 820 | F | C040 | 820_AB | EtW | 11.21 | 23mL |  |  | UTD |  |  |  |  |
| 8200CCF805 |  | Pavement Excavation and Expose Underground Utilities |  | 29d | 2011-03-15 A | 2011-04-20 A | 8200CCF794, 8200sum570 FF, 8200CCF800 | 100% | 2011-04-06 | 2011-05-18 | Cal 1 | Other Skill Labour (Civil) [4608 h]; Plant Operator [768 h]; Backhoe [96 h] | CC F | SSPPIER | STAGE0 | 1 |  | 820 | F | C020 | 820_AB | EtW | 11.21 | 40mL |  |  | UTD |  |  |  |  |
| 8200CCF815 |  | Agree Diversion Scheme with CLP for 132kV |  | 5d | 2011-04-18 A | 2011-04-26 A | 8200CCF805 FS-6d | 100% | 2011-06-20 | 2011-06-24 | Cal 3 |  | CC F | SSPPIER | STAGE0 |  |  |  | F |  | 820_AB | EtW |  |  |  |  |  |  |  |  |  |
|  | 50 | **Stage 1** |  |  | 2011-04-27 | 2013-10-31 |  |  |  |  |  |  |  |  |  |  |  |  |  |  |  |  |  |  |  |  |  |  |  |  |  |
| 8200CCF802 |  | Extended TTMs Application & Approval |  | 10d | 2011-04-27 A | 2011-05-10 A | 8200CCF815 | 100% | 2011-06-20 | 2011-06-30 | Cal 3 |  | CC F | SSPPIER | STAGE1 |  |  |  | F |  | 820_AB | EtW |  |  |  |  |  |  |  |  |  |
| 8200CCF807a |  | Remove Retaining Wall for Watermain Diversion |  | 40d | 2011-05-11 A | 2011-07-16 A | 8200CCF802 | 100% | 2011-06-21 | 2011-08-09 | Cal 1 |  | CC F | SSPPIER | STAGE1 |  |  |  | F |  | 820_AB | EtW |  |  |  |  |  |  |  |  |  |
| 8200CCF807 |  | Stage 1 Extended TTMs Implementation |  | 27d | 2011-05-15 A | 2011-06-10 A | 8200CCF805, 8200CCF802, 8200CCF798, 8200CCF800 | 100% | 2011-06-19 | 2011-07-15 |  | Other Skill Labour (Civil) [4608 h] | CC F | SSPPIER | STAGE1 | 1 |  | 820 | F | C040 | 820_AB | EtW | 11.21 |  |  |  | UTD |  |  |  |  |
| 8200sum580 |  | Stage 1 Piles Removal (22nos.) (DT) | level of effort | 343d | 2011-05-15 A | 2012-03-24 A | 8200CCF807 SS | 100% | 2011-06-19 | 2012-05-26 |  |  |  |  |  |  |  |  |  |  | 820_AB |  |  |  | 4 | S1 |  | 2012-03-13 | 2012-03-13 |  |  |
| 8200CCF830a |  | Divert 1400D Fresh Watermain (FW205) |  | 114d | 2011-07-21 A | 2011-11-12 A | 8200CCF807, 8200CCF807a, 8200MTF460, 8200CCF807a10 | 100% | 2011-08-31 | 2011-12-22 |  | Other Skill Labour (Civil) [8640 h]; Plant Operator [2880 h]; Backhoe [240 h]; Sheet piling rig [60]; Mobile Crane [60 h] | CC F | SSPPIER | STAGE1 | UTILITY |  | 820 | F | C020 | 820_AB | EtW | 11.21 | 20mL |  |  | UTD |  |  |  |  |
| 8200CCF807a10 |  | Prepare Trench for 132kV Diversion |  | 42d | 2011-07-25 A | 2011-09-05 A | 8200CCF807 | 100% | 2011-07-02 | 2011-08-12 |  |  | CC F | SSPPIER | STAGE1 |  |  |  | F |  | 820_AB | EtW |  |  |  |  |  |  |  |  |  |
| 8200CCF830d1 |  | Joint Bay Construction & Laying New Cable by CLP (132kV Diversion) |  | 34d | 2011-09-06 A | 2011-10-10 A | 8200CCF807a10 | 100% | 2012-01-15 | 2012-02-17 |  |  | CC F | SSPPIER | STAGE1 |  |  |  | F |  | 820_AB | EtW |  |  |  |  |  |  |  |  |  |
| 8200CCF830d2 |  | Power Outage & Connection by CLP (132kV Diversion) |  | 53d | 2011-10-11 A | 2011-12-03 A | 8200CCF830d1 | 100% | 2012-01-15 | 2012-03-07 |  |  | CC F | SSPPIER | STAGE1 |  |  |  | F |  | 820_AB | EtW |  |  |  |  |  |  |  |  |  |
| 8200CCF830b |  | Divert 600D Salt Watermain (SW202) |  | 59d | 2011-11-14 A | 2012-01-12 A | 8200CCF807a10, 8200CCF830a | 100% | 2012-01-15 | 2012-03-13 |  | Other Skill Labour (Civil) [1440 h]; Plant Operator [240 h]; Backhoe [30 h] | CC F | SSPPIER | STAGE1 | UTILITY |  | 820 | F | C020 | 820_AB | EtW | 11.21 | 20mL |  |  | UTD |  |  |  |  |
| 8200CCF830d4 |  | Mobilization for Pile Removal |  | 4d | 2012-01-16 A | 2012-01-19 A | 8200CCF830b, 8200CCF830d2 | 100% | 2012-08-31 | 2012-09-04 | Cal 1 |  | CC F | SSPPIER | STAGE1 | PILEREM |  | 820 | F |  | 820_AB | EtW | 11.21 | 22no. |  |  | RRIW |  |  | 3day/pile | 3d/pile |
| 8200CCF830d6 |  | Remove the Existing Vertical Piles @ GL.1 - DT(11nos.) |  | 55d | 2012-02-06 A | 2012-03-24 A | 8200CCF830d4 SS+2d, 8200CCF830d7 FS-76d, 8200CCF830a, 8200sum580 FF, 8200CCF830b | 100% | 2012-09-03 | 2012-11-10 | Cal 1 | Pile Removal [11 Nos]; Other Skill Labour (Civil) [2640 h]; Plant Operator [880 h]; Pile Removal rig [55]; Mobile Crane [55 h] | CC F | SSPPIER | STAGE1 | PILEREM |  | 820 | F |  | 820_AB | EtW | 11.21 | 22no. |  |  | RRIW |  |  | 3day/pile | 3d/pile |
| 8200CCF830d7 |  | Remove the Existing Vertical Piles @ GL.2 - DT(11nos.) |  | 55d | 2012-02-06 A | 2012-03-27 A | 8200DSF225, 8200CCF830d4, 8200CCF830d2 | 100% | 2012-09-05 | 2012-11-13 | Cal 1 | Pile Removal [11 Nos]; Other Skill Labour (Civil) [2640 h]; Plant Operator [880 h]; Pile Removal rig [55]; Mobile Crane [55 h] | CC F | SSPPIER | STAGE1 | PILEREM |  | 820 | F |  | 820_AB | EtW | 11.21 | 22no. |  |  | RRIW |  |  | 3day/pile | 3d/pile |
| 8200CCF831 |  | Agree with WSD for reinstatement of diverted 1400D FW main (FW205) |  | 68d | 2012-04-02 A | 2012-06-30 A | 8200CCF830d7, 8200CCF830a | 100% | 2012-11-14 | 2013-02-04 | Cal 1 | Plant Operator [432 h]; Roller [18]; Backhoe [36 h]; Other Skill Labour (Civil) [1440 h] | CC F | SSPPIER | STAGE1 | 1 |  | 820 | F |  | 820_AB | EtW | 11.21 |  |  |  | RRIW |  |  | 0.6m/day |  |
| 8200CCF831a |  | Reinstate diverted 1400D FW main (FW205) |  | 24d | 2013-02-28 A | 2013-10-11 A | 8200CCF831 | 100% | 2013-02-28 | 2013-03-27 | Cal 1 | Other Skill Labour (Civil) [1440 h]; Plant Operator [432 h]; Roller [18]; Backhoe [36 h] | CC F | SSPPIER | STAGE1 | 1 |  | 820 | F |  | 820_AB | EtW | 11.21 |  |  |  | RRIW |  |  | 0.6m/day |  |
| 8200CCF832 |  | Temporary Road Reinstatement |  | 18d | 2013-10-12 A | 2013-10-31 A | 8200CCF830d7, 8200CCF831a, 8200CCF830d6 | 100% | 2013-10-12 | 2013-11-02 | Cal 1 | Other Skill Labour (Civil) [1440 h]; Plant Operator [432 h]; Roller [18]; Backhoe [36 h] | CC F | SSPPIER | STAGE1 | 1 |  | 820 | F |  | 820_AB | EtW | 11.21 |  |  |  | RRIW |  |  | 0.6m/day |  |

| ID | WBS | Activity | Type | Duration | Start | Finish | Predecessors | Complete | Planned start | Planned finish | Constraint | Calendar | Resources | Responsible by | LEVEL 1 | LEVEL 2 | LEVEL 3 | SUMMARY | Contracts | Cost Centre | Works Area | Phases of Works | Classification of Works | 820_As-built | Priority A | Sum1 | TBM UT f | TBM UT s | QUANTITY | Production Rate | Rate | Order | TBM DT s | TBM DT f |
| --- | --- | --- | --- | --- | --- | --- | --- | --- | --- | --- | --- | --- | --- | --- | --- | --- | --- | --- | --- | --- | --- | --- | --- | --- | --- | --- | --- | --- | --- | --- | --- | --- | --- | --- |
|  | 60 | **Stage 2** |  |  | 2012-06-04 | 2014-06-28 |  |  |  |  |  |  |  |  |  |  |  |  |  |  |  |  |  |  |  |  |  |  |  |  |  |  |  |  |
| 8200CCF838 |  | Stage 2 TTM Implementation |  | 17d | 2012-06-04 A | 2012-06-20 A | 8200CCF830d6, 8200CCF832, 8200CCF830d7 | 100% | 2013-03-29 | 2013-04-14 |  |  | Other Skill Labour (Civil) [4608 h] | EtW | CC F | SSPPIER | STAGE2 | 1 | 820 | F | 11.21 | C040 | UTD | 820_AB |  |  |  |  |  |  |  |  |  |  |
| 8200sum590 |  | Stage 2 Piles Removal (20nos.) (UT) | level of effort | 224d | 2012-06-04 A | 2012-12-29 A | 8200CCF838 SS | 100% | 2013-03-29 | 2013-11-07 |  |  |  |  |  |  |  |  |  |  |  |  |  | 820_AB | 4 | S1 | 2013-04-23 | 2013-04-23 |  |  |  |  |  |  |
| 8200CCF840 |  | Divert 1200D Foul Sewer Drain (FD202) |  | 22d | 2012-06-21 A | 2012-06-30 A | 8200CCF838 | 100% | 2013-04-15 | 2013-05-13 |  | Cal 1 | Plant Operator [1440 h]; Backhoe [120 h]; Mobile Crane [60 h]; Other Skill Labour (Civil) [8640 h] | EtW | CC F | SSPPIER | STAGE2 | UTILITY | 820 | F | 11.21 | C020 | UTD | 820_AB |  |  |  |  | 20mL |  |  |  |  |  |
| 8200CCF856 |  | Remove the Existing 12 Piles (UT) @GL.4 |  | 60d | 2012-07-03 A | 2012-08-25 A | 8200CCF840 | 100% | 2013-05-14 | 2013-07-31 |  | Cal 1 | Pile Removal [12 Nos]; Other Skill Labour (Civil) [3616 h]; Plant Operator [864 h]; Pile Removal rig [72]; Mobile Crane [36 h] | EtW | CC F | SSPPIER | STAGE2 | PILEREM | 820 | F | 11.21 |  | RRIW | 820_AB |  |  |  |  | 17no.V, 2no.R | 3day/pileV,20day/pil | 3d/pile |  |  |  |
| 8200CCF857 |  | Divert 900D Stormwater Drain (SD214) |  | 25d | 2012-08-29 A | 2012-10-27 A | 8200CCF838, 8200CCF840 FF, 8200CCF856 FS+3d | 100% | 2013-08-05 | 2013-09-04 |  | Cal 1 | Other Skill Labour (Civil) [2880 h]; Plant Operator [576 h]; Backhoe [72 h] | EtW | CC F | SSPPIER | STAGE2 | UTILITY | 820 | F | 11.21 | C020 | UTD | 820_AB |  |  |  |  | 20mL+4manhole |  |  |  |  |  |
| 8200CCF858 |  | Remove the Existing 10 Piles (UT) @GL.5 |  | 50d | 2012-10-31 A | 2012-12-29 A | 8200CCF857, 8200sum590 FF, 8200CCF856 | 100% | 2012-11-28 | 2013-01-28 |  | Cal 1 | Pile Removal [10 Nos]; Other Skill Labour (Civil) [2880 h]; Plant Operator [720 h]; Mobile Crane [30 h]; Pile Removal rig [60] | EtW | CC F | SSPPIER | STAGE2 | PILEREM | 820 | F | 11.21 |  | RRIW | 820_AB |  |  |  |  | 4no. | 20day/pile | 20d/pile |  |  |  |
| 8200CCF860 |  | Permanent Road Reinstatement |  | 96d | 2013-01-07 A | 2014-06-28 A | 8200CCF858, 8200CCF856 | 100% | 2013-01-07 | 2013-05-09 |  | Cal 1 | Other Skill Labour (Civil) [1728 h]; Plant Operator [576 h]; Backhoe [36 h] | EtW | CC F | SSPPIER | STAGE2 | 1 | 820 | F | 11.21 |  | RRIW | 820_AB |  |  |  |  |  | 0.6m/day |  |  |  |  |
|  | 70 | **Completion** |  |  | 2012-05-02 | 2014-06-11 |  |  |  |  |  |  |  |  |  |  |  |  |  |  |  |  |  |  |  |  |  |  |  |  |  |  |  |  |
| 8200CCF864 |  | Prepare & Submit Draft As-built Drawings |  | 24d | 2012-05-02 A | 2014-06-11 A | 8200CCF860 | 100% | 2012-05-02 | 2012-05-29 |  | Cal 3 |  | EtW | CC F | SSPPIER | O&M AsB |  |  | F |  |  |  | 820_AB |  |  |  |  |  |  |  |  |  |  |
| 8200CCF866 |  | Prepare & Submit As-built Drawings |  | 24d | 2012-05-02 A | 2014-06-11 A | 8200CCF864 | 100% | 2012-05-02 | 2012-05-29 |  | Cal 3 |  | EtW | CC F | SSPPIER | O&M AsB |  |  | F |  |  |  | 820_AB |  |  |  |  |  |  |  |  |  |  |
|  | CG | **Cost Centre G - Utility Diversion Works** |  |  | 2010-05-12 | 2015-10-10 |  |  |  |  |  |  |  |  |  |  |  |  |  |  |  |  |  |  |  |  |  |  |  |  |  |  |  |  |
|  | 10 | **IPS Milestones** |  |  | 2011-01-30 | 2013-10-29 |  |  |  |  |  |  |  |  |  |  |  |  |  |  |  |  |  |  |  |  |  |  |  |  |  |  |  |  |
|  | 10 | **General** |  |  | 2011-01-30 | 2013-10-29 |  |  |  |  |  |  |  |  |  |  |  |  |  |  |  |  |  |  |  |  |  |  |  |  |  |  |  |  |
| 8200MSG01 |  | Complete Temp. Diversion of Box Culvert FS1 | milestone | 0d | 2011-01-30 A | 2011-01-30 A |  | 100% | 2011-09-30 | 2011-09-30 | finish on or after 2011-01-30 |  |  | INg | CC G | MILESTO | o | A | 820 | G |  |  |  |  |  |  |  |  |  |  |  |  |  |  |
| 8200MSG02 |  | Complete Thrust Block for North Temp.DSD Rising Main | milestone | 0d | 2011-02-27 A | 2011-02-27 A | 8200CCG612 | 100% | 2011-03-27 | 2011-03-27 | finish on or after 2011-03-27 |  |  | INg | CC G | MILESTO | o | A | 820 | G |  |  |  |  |  |  |  |  |  |  |  |  |  |  |
| 8200MSG03 |  | Remove Pile for DSD Rising Main adj. TBM Launch Shaft | milestone | 0d | 2011-11-25 A | 2011-11-25 A | 8200CCG640 | 100% | 2012-01-15 | 2012-01-15 | finish on or after 2011-11-27 |  |  | INg | CC G | MILESTO | o | A | 820 | G |  |  |  |  |  |  |  |  |  |  |  |  |  |  |
| 8200MSG04 |  | Complete Removal of 60% of Obstruction Piles for WD1 | milestone | 0d | 2012-01-29 A | 2012-01-29 A | 8200CCG465 | 100% | 2012-08-31 | 2012-08-31 | finish on or after 2012-01-29 |  |  | INg | CC G | MILESTO | o | A | 820 | G |  |  |  |  |  |  |  |  |  |  |  |  |  |  |
| 8200MSG05 |  | Remove Barrettes for DSD Culvert NC1 | milestone | 0d | 2012-03-23 A | 2012-03-23 A | 8200CCG812, 8200CCG906, 8200CCG928, 8200CCG910 | 100% |  |  | finish on or after 2012-03-25 |  |  | INg | CC G | MILESTO | o | A | 820 | G |  |  |  |  |  |  |  |  |  |  |  |  |  |  |
| 8200MSG06 |  | Complete Box Culvert WD1 Reinstate Wk & Handover | milestone | 0d | 2013-10-29 A | 2013-10-29 A | 8200CCG510, 8200CCG210 | 100% |  |  | finish on or after 2013-03-31 |  |  | INg | CC G | MILESTO | o | A | 820 | G |  |  |  |  |  |  |  |  |  |  |  |  |  |  |
|  | 20 | **G4 DSD Culvert WD1 Potential Obstruction** |  |  | 2010-05-12 | 2015-05-31 |  |  |  |  |  |  |  |  |  |  |  |  |  |  |  |  |  |  |  |  |  |  |  |  |  |  |  |  |
| 8200y870 |  | Obstruction Removal at 1.1m Dia.Sewer Pipe Area (UT) | level of effort | 0d | 2010-12-14 A | 2012-12-07 A |  | 100% | 2010-12-14 | 2010-12-14 |  |  |  |  |  |  |  |  |  |  |  |  |  | 820_AB | 4 | S1 | 2013-05-16 | 2013-05-16 |  |  |  | 3 |  |  |
| 8200y900 |  | WD1 Piles Removal (P1,P3 & P9) (UT) | level of effort | 117d | 2010-12-14 A | 2011-04-09 A | 8200CCG335 SS | 100% | 2011-03-13 | 2011-07-07 |  |  |  |  |  |  |  |  |  |  |  |  |  | 820_AB | 4 | S1 | 2013-05-16 | 2013-05-16 |  |  |  | 4 |  |  |
| 8200y910 |  | WD1Pre-bored Socket H-piles & Pile Cap (5nos..) | level of effort | 125d | 2011-04-07 A | 2011-08-09 A | 8200CCG400a SS | 100% | 2011-06-21 | 2011-10-23 |  |  |  |  |  |  |  |  |  |  |  |  |  | 820_AB | 4 | S1 |  |  |  |  |  | 5 |  |  |
| 8200y880 |  | Obstruction Removal at 1.1m Dia.Sewer Pipe Area (DT) | level of effort | 272d | 2011-05-18 A | 2012-03-31 A | 8200CCG145 SS | 100% | 2011-07-22 | 2012-04-18 |  |  |  |  |  |  |  |  |  |  |  |  |  | 820_AB | 4 | S1 |  |  |  |  |  | 1 | 2012-06-13 | 2012-06-13 |
| 8200y890 |  | Obstruction Removal at 1.8m Dia.Sewer Pipe Area (DT) | level of effort | 272d | 2011-07-22 A | 2013-03-31 A | 8200CCG260 SS | 100% | 2011-08-31 | 2012-05-28 |  |  |  |  |  |  |  |  |  |  |  |  |  | 820_AB | 4 | S1 |  |  |  |  |  | 2 | 2012-06-13 | 2012-06-13 |
| 8200y920 |  | WD1 Piles Removal (P4,P6,P7 & P8) (UT) | level of effort | 321d | 2011-10-13 A | 2012-02-07 A | 8200CCG450 SS | 100% | 2012-04-13 | 2013-02-27 |  |  |  |  |  |  |  |  |  |  |  |  |  | 820_AB | 4 | S1 | 2013-05-16 | 2013-05-16 |  |  |  | 6 |  |  |

| ID | WBS | Activity | Type | Duration | Start | Finish | Predecessors | Complete | Planned start | Planned finish | Calendar | LEVEL 1 | LEVEL 2 | LEVEL 3 | SUMMARY | Responsible (bm makes Global) | Contracts | Cost Centre | Phases of Works | 820_As-built |
| --- | --- | --- | --- | --- | --- | --- | --- | --- | --- | --- | --- | --- | --- | --- | --- | --- | --- | --- | --- | --- |
|  | 10 | **Diversion Scheme Submission** |  |  | 2010-05-12 | 2010-10-13 |  |  |  |  |  |  |  |  |  |  |  |  |  |  |
| 8200DSG100 |  | Prepare Diversion Scheme Proposal |  | 46d | 2010-05-12 A | 2010-07-07 A | 8200KD1020 | 100% | 2011-02-28 | 2011-04-26 | Cal 3 | CC G | WD1 CUL | SCHME | 1 | INg | 820 | G | C010 | 820_AB |
| 8200DSG105 |  | Comment of Diversion Scheme by DSD |  | 6d | 2010-07-08 A | 2010-07-13 A | 8200DSG100 | 100% | 2011-04-12 | 2011-04-17 |  | CC G | WD1 CUL | SCHME | 1 | INg | 820 | G | C010 | 820_AB |
| 8200DSG110 |  | Proposed Diversion Scheme Re-subm'n |  | 20d | 2010-07-14 A | 2010-08-05 A | 8200DSG105 | 100% | 2011-05-11 | 2011-06-02 | Cal 3 | CC G | WD1 CUL | SCHME | 1 | INg | 820 | G | C010 | 820_AB |
| 8200DSG115 |  | Proposed Diversion Scheme Approval by DSD |  | 57d | 2010-08-06 A | 2010-10-13 A | 8200DSG110 | 100% | 2011-05-25 | 2011-08-01 | Cal 3 | CC G | WD1 CUL | SCHME | 1 | INg | 820 | G | C010 | 820_AB |
|  | 20 | **Temp.works Design Submission** |  |  | 2010-05-12 | 2010-10-13 |  |  |  |  |  |  |  |  |  |  |  |  |  |  |
| 8200DSG150 |  | Prepare Temp.Gate & Working Platform Proposal |  | 46d | 2010-05-12 A | 2010-07-07 A | 8200KD1020 | 100% | 2011-02-28 | 2011-04-26 | Cal 3 | CC G | WD1 CUL | TEMPWKD | 1 |  | 820 | G | C010 | 820_AB |
| 8200DSG155 |  | Comment of Temp.Gate& Working Platform byRDO/DSD |  | 6d | 2010-07-08 A | 2010-07-13 A | 8200DSG150 | 100% | 2011-04-12 | 2011-04-17 |  | CC G | WD1 CUL | TEMPWKD | 1 |  | 820 | G | C010 | 820_AB |
| 8200DSG160 |  | Proposed Temp.Gate & Working Platform Re-subm'n |  | 20d | 2010-07-14 A | 2010-08-05 A | 8200DSG155 | 100% | 2011-05-11 | 2011-06-02 | Cal 3 | CC G | WD1 CUL | TEMPWKD | 1 |  | 820 | G | C010 | 820_AB |
| 8200DSG165 |  | Proposed Temp.Gate& WorkingPlatf'mApp'l /RDO&DSD |  | 57d | 2010-08-06 A | 2010-10-13 A | 8200DSG160 | 100% | 2011-05-25 | 2011-08-01 | Cal 3 | CC G | WD1 CUL | TEMPWKD | 1 |  | 820 | G | C010 | 820_AB |
|  | 30 | **Method Statement Submission and Approval** |  |  | 2010-06-22 | 2010-09-10 |  |  |  |  |  |  |  |  |  |  |  |  |  |  |
| 8200MTG400 |  | MS Preparation for WDI Obstruction Removal |  | 32d | 2010-06-22 A | 2010-07-23 A | 8200KD1020 | 100% | 2011-01-08 | 2011-02-08 |  | CC G | WD1 CUL | MS PREP | 1 | ARo | 820 | F | C010 | 820_AB |
| 8200MTG410 |  | MS Submission to MTR | milestone | 0d | 2010-07-23 A | 2010-07-23 A | 8200MTG400 | 100% | 2011-03-03 | 2011-03-03 | Cal 3 | CC G | WD1 CUL | MS PREP | 1 | ARo | 820 | F | C010 | 820_AB |
| 8200MTG420 |  | MS Comment by MTR |  | 19d | 2010-07-24 A | 2010-08-11 A | 8200MTG410 | 100% | 2011-03-04 | 2011-03-22 |  | CC G | WD1 CUL | MS PREP | 1 | ARo | 820 | F | C010 | 820_AB |
| 8200MTG430 |  | MS Re-submission Preparation |  | 6d | 2010-08-12 A | 2010-08-18 A | 8200MTG420 | 100% | 2011-04-01 | 2011-04-08 | Cal 3 | CC G | WD1 CUL | MS PREP | 1 | ARo | 820 | F | C010 | 820_AB |
| 8200MTG440 |  | MS Comment & Approval by MTR |  | 23d | 2010-08-19 A | 2010-09-10 A | 8200MTG430 | 100% | 2011-04-16 | 2011-05-08 |  | CC G | WD1 CUL | MS PREP | 1 | ARo | 820 | F | C010 | 820_AB |
| 8200MTG450 |  | Issue for Construction | milestone | 0d | 2010-09-10 A | 2010-09-10 A | 8200MTG420 FS+1d, 8200MTG440 | 100% | 2011-05-13 | 2011-05-13 | Cal 3 | CC G | WD1 CUL | MS PREP | 1 | ARo | 820 | F | C010 | 820_AB |
|  | 40 | **TTM Scheme Submission & Approval** |  |  | 2010-05-12 | 2010-09-23 |  |  |  |  |  |  |  |  |  |  |  |  |  |  |
| 8200TMG100 |  | Prepare Temp.Pedestrian Walkway Diversion Scheme |  | 12d | 2010-05-12 A | 2010-05-27 A | 8200KD1020 | 100% | 2011-01-08 | 2011-01-21 | Cal 1 | CC G | WD1 CUL | TTMS/AP | TTMS AP |  | 820 | G | C040 | 820_AB |
| 8200TMG120 |  | Prepare Temporary Traffic Management |  | 23d | 2010-05-12 A | 2010-06-09 A | 8200KD1020 | 100% | 2011-01-08 | 2011-02-08 | Cal 1 | CC G | WD1 CUL | TTMS/AP | TTMS AP |  | 820 | G | C040 | 820_AB |
| 8200TMG155 |  | Prepare Temp.TrafficManagem't for TreeTransplant |  | 23d | 2010-05-12 A | 2010-06-09 A | 8200KD1020 | 100% | 2011-01-08 | 2011-02-08 | Cal 1 | CC G | WD1 CUL | TTMS/AP | TTMS AP |  | 820 | G | C040 | 820_AB |
| 8200TMG105 |  | Temp.Pedestrian Walkway Approval by SLG/HyD/etc. |  | 72d | 2010-05-28 A | 2010-08-07 A | 8200TMG100 | 100% | 2011-01-22 | 2011-04-03 |  | CC G | WD1 CUL | TTMS/AP | TTMS AP |  | 820 | G | C040 | 820_AB |
| 8200TMG135 |  | TTM reviewed by SLG |  | 30d | 2010-06-03 A | 2010-07-02 A | 8200TMG130 | 100% | 2011-05-13 | 2011-06-11 |  | CC G | WD1 CUL | TTMS/AP | TTMS AP |  | 820 | G | C040 | 820_AB |
| 8200TMG125 |  | TTM reviewed by SLG |  | 23d | 2010-06-10 A | 2010-07-02 A | 8200TMG120 | 100% | 2011-02-09 | 2011-03-03 |  | CC G | WD1 CUL | TTMS/AP | TTMS AP |  | 820 | G | C040 | 820_AB |
| 8200TMG160 |  | TTM reviewed by SLG |  | 104d | 2010-06-10 A | 2010-09-21 A | 8200TMG155 | 100% | 2011-02-09 | 2011-05-23 |  | CC G | WD1 CUL | TTMS/AP | TTMS AP |  | 820 | G | C040 | 820_AB |
| 8200TMG130 |  | Resubmit TTM |  | 5d | 2010-07-03 A | 2010-07-09 A | 8200TMG125 | 100% | 2011-05-04 | 2011-05-11 | Cal 1 | CC G | WD1 CUL | TTMS/AP | TTMS AP |  | 820 | G | C040 | 820_AB |
| 8200TMG140 |  | Notification to RMO |  | 29d | 2010-07-16 A | 2010-08-13 A | 8200TMG135 | 100% | 2011-06-11 | 2011-07-09 |  | CC G | WD1 CUL | TTMS/AP | TTMS AP |  | 820 | G | C040 | 820_AB |
| 8200TMG145 |  | XP Application & Approval |  | 15d | 2010-07-20 A | 2010-08-03 A | 8200TMG135 FF+6d, 8200TMG125 SS+30d | 100% | 2011-02-28 | 2011-03-14 |  | CC G | WD1 CUL | TTMS/AP |  |  | 820 | G | C040 | 820_AB |
| 8200TMG110 |  | Notification to RMO |  | 6d | 2010-08-09 A | 2010-08-14 A | 8200TMG105 | 100% | 2011-04-16 | 2011-04-21 |  | CC G | WD1 CUL | TTMS/AP | TTMS AP |  | 820 | G | C040 | 820_AB |
| 8200TMG165 |  | Notification to RMO |  | 4d | 2010-08-13 A | 2010-08-16 A | 8200TMG160 | 100% | 2011-05-05 | 2011-05-08 |  | CC G | WD1 CUL | TTMS/AP | TTMS AP |  | 820 | G | C040 | 820_AB |
| 8200TMG115 |  | Implement for Temp.Pederstrian Walkway | milestone | 0d | 2010-08-14 A | 2010-08-14 A | 8200TMG110 | 100% | 2011-04-27 | 2011-04-27 |  | CC G | WD1 CUL | TTMS/AP | TTMS AP |  | 820 | G | C040 | 820_AB |
| 8200TMG150 |  | Implement TTM | milestone | 0d | 2010-09-23 A | 2010-09-23 A | 8200TMG145, 8200TMG140 | 100% | 2011-06-28 | 2011-06-28 |  | CC G | WD1 CUL | TTMS/AP | TTMS AP |  | 820 | G | C040 | 820_AB |

| ID | WBS | Activity | Type | Duration | Start | Finish | Predecessors | Complete | Planned start | Planned finish | Calendar | Resources | LEVEL 1 | LEVEL 2 | LEVEL 3 | SUMMARY | Contracts | Cost Centre | Phases of Works | 820_As-built | Classification of Works | Responsible by | Works Area |
| --- | --- | --- | --- | --- | --- | --- | --- | --- | --- | --- | --- | --- | --- | --- | --- | --- | --- | --- | --- | --- | --- | --- | --- |
|  | 50 | **Proposed Culvert New Founding System** |  |  | 2010-07-29 | 2011-02-08 |  |  |  |  |  |  |  |  |  |  |  |  |  |  |  |  |  |
| 8200DSG185 |  | Prepare & Submit Culvert New Founding System |  | 11d | 2010-07-29 A | 2010-08-10 A | 8200KD1020 FS+78d | 100% | 2011-02-28 | 2011-03-11 | Cal 3 |  | CC G | WD1 CUL | CULFOUN | 1 | 820 | G | C010 | 820_AB |  |  |  |
| 8200DSG190 |  | Comment of Culvert New Founding System byRDO/DSD |  | 15d | 2010-08-11 A | 2010-08-25 A | 8200DSG185 | 100% | 2011-04-12 | 2011-04-26 |  |  | CC G | WD1 CUL | CULFOUN | 1 | 820 | G | C010 | 820_AB |  |  |  |
| 8200DSG195 |  | Culvert New Founding System Re-submission |  | 106d | 2010-08-20 A | 2010-12-24 A | 8200DSG190 | 100% | 2011-05-24 | 2011-09-27 | Cal 3 |  | CC G | WD1 CUL | CULFOUN | 1 | 820 | G | C010 | 820_AB |  |  |  |
| 8200DSG200 |  | Culvert New Founding System Approval by RDO/DSD |  | 50d | 2010-12-21 A | 2011-02-08 A | 8200DSG195 | 100% | 2011-06-08 | 2011-07-27 |  |  | CC G | WD1 CUL | CULFOUN | 1 | 820 | G | C010 | 820_AB |  |  |  |
|  | 60 | **Utilities Coordination** |  |  | 2010-05-12 | 2010-09-11 |  |  |  |  |  |  |  |  |  |  |  |  |  |  |  |  |  |
| 8200DSG220 |  | Prepare & Submit Utilities Diversion Scheme |  | 28d | 2010-05-12 A | 2010-06-14 A | 8200KD1020 | 100% | 2011-02-28 | 2011-03-31 | Cal 3 |  | CC G | WD1 CUL | UTILI C | 1 | 820 | G | C010 | 820_AB | UTD |  |  |
| 8200DSG225 |  | Comment of Utilities Diversion Scheme |  | 28d | 2010-06-15 A | 2010-07-12 A | 8200DSG220 | 100% | 2011-04-01 | 2011-04-28 |  |  | CC G | WD1 CUL | UTILI C | 1 | 820 | G | C010 | 820_AB | UTD |  |  |
| 8200DSG240 |  | Preparation Excavation Permit |  | 47d | 2010-06-28 A | 2010-08-21 A | 8200DSG235 FF | 100% | 2011-04-11 | 2011-06-10 | Cal 3 |  | CC G | WD1 CUL | UTILI C | 1 | 820 | G | C010 | 820_AB | UTD |  |  |
| 8200DSG230 |  | Utilities Diversion Scheme Re-submission |  | 12d | 2010-07-13 A | 2010-07-26 A | 8200DSG225 | 100% | 2011-04-29 | 2011-05-14 | Cal 3 |  | CC G | WD1 CUL | UTILI C | 1 | 820 | G | C010 | 820_AB | UTD |  |  |
| 8200DSG235 |  | Utilities Diversion Scheme Approval |  | 47d | 2010-07-27 A | 2010-09-11 A | 8200DSG230 | 100% | 2011-05-15 | 2011-06-30 |  |  | CC G | WD1 CUL | UTILI C | 1 | 820 | G | C010 | 820_AB | UTD |  |  |
| 8200DSG245 |  | Excavation Permit Issue | milestone | 0d | 2010-08-21 A | 2010-08-21 A | 8200DSG240 | 100% | 2011-06-13 | 2011-06-13 | Cal 1 |  | CC G | WD1 CUL | UTILI C | 1 | 820 | G | C010 | 820_AB | UTD |  |  |
|  | 70 | **Site Possession Application** |  |  | 2010-05-12 | 2010-08-17 |  |  |  |  |  |  |  |  |  |  |  |  |  |  |  |  |  |
| 8200DSG260 |  | Apply Site Possession to SLG |  | 6d | 2010-05-12 A | 2010-05-17 A | 8200KD1020 | 100% | 2011-02-28 | 2011-03-05 |  |  | CC G | WD1 CUL | SITEPOS | TTMS AP | 820 | G | C040 | 820_AB | UTD |  |  |
| 8200DSG265 |  | SLG Comments & Approval |  | 24d | 2010-05-18 A | 2010-06-10 A | 8200DSG260 | 100% | 2011-03-06 | 2011-03-29 |  |  | CC G | WD1 CUL | SITEPOS | TTMS AP | 820 | G | C040 | 820_AB | UTD |  |  |
| 8200DSG267 |  | TGLA Comments & Approval |  | 68d | 2010-06-11 A | 2010-08-17 A | 8200DSG265 | 100% | 2011-03-29 | 2011-06-04 |  |  | CC G | WD1 CUL | SITEPOS |  |  | G |  | 820_AB |  |  |  |
| 8200DSG270 |  | Site Possession | milestone | 0d | 2010-08-17 A | 2010-08-17 A | 8200DSG267, 8200DSG265 | 100% | 2011-06-06 | 2011-06-06 |  |  | CC G | WD1 CUL | SITEPOS | TTMS AP | 820 | G | C040 | 820_AB | UTD |  |  |
|  | 80 | **Power Cable & Fresh Water Main** |  |  | 2010-08-18 | 2012-10-31 |  |  |  |  |  |  |  |  |  |  |  |  |  |  |  |  |  |
| 8200CCG050 |  | Site Mobilization |  | 23d | 2010-08-18 A | 2010-09-16 A | 8200DSG270 | 100% | 2011-06-07 | 2011-07-06 | Cal 1 |  | CC G | WD1 CUL | POWCABL | 1 | 820 | G | C020 | 820_AB | UTD | AAu | 10.1 |
| 8200CCG060 |  | Temp.Traffic Diversion(Pedestrian Walkway) |  | 11d | 2010-09-01 A | 2010-09-15 A | 8200TMG115 | 100% | 2011-02-28 | 2011-03-11 | Cal 1 | Other Skill Labour (Civil) [576 h] | CC G | WD1 CUL | POWCABL | 1 | 820 | G | C040 | 820_AB | UTD | AAu | 10.1 |
| 8200CCG055 |  | Temp.Working Platform |  | 48d | 2010-09-02 A | 2010-11-02 A | 8200DSG270, 8200DSG265, 8200CCG050 FS-12d | 100% | 2011-06-23 | 2011-08-23 | Cal 1 | Mobile Crane [48 h]; Plant Operator [384 h]; Other Skill Labour (Civil) [4608 h] | CC G | WD1 CUL | POWCABL | 1 | 820 | G | C040 | 820_AB | UTD | AAu | 10.1 |
| 8200CCG065 |  | Trial Trench & Record |  | 54d | 2010-09-20 A | 2010-11-24 A | 8200CCG060, 8200DSG245 | 100% | 2011-06-13 | 2011-08-20 | Cal 1 | Other Skill Labour (Civil) [576 h]; Backhoe [12 h]; Plant Operator [96 h] | CC G | WD1 CUL | POWCABL | 1 | 820 | G |  | 820_AB | UTD | AAu | 10.1 |
| 8200CCG045 |  | GI works for WD1 |  | 110d | 2010-09-21 A | 2011-02-07 A | 8200KD1020 FS+130d | 100% | 2011-01-08 | 2011-06-01 | Cal 1 | Mobile Crane [30 h]; Other Skill Labour (Civil) [1440 h]; Drilling Rig [30 h] | CC G | WD1 CUL | POWCABL |  |  | G |  | 820_AB |  | DCl |  |
| 8200CCG070 |  | Slew 400KV Cable(CLP204)& 2Sets of 11KV(CLP205) |  | 77d | 2010-09-25 A | 2010-12-29 A | 8200CCG065 | 100% | 2011-07-02 | 2011-10-10 | Cal 1 | Plant Operator [656 h]; Other Skill Labour (Civil) [3936 h]; Backhoe [82 h] | CC G | WD1 CUL | POWCABL | UTILITY | 820 | G | C020 | 820_AB | UTD | AAu | 10.1 |
| 8200CCG075 |  | Slew Tele Cables (PCCW204+HKBN201) |  | 5d | 2010-12-30 A | 2011-01-07 A | 8200CCG070 | 100% | 2011-08-24 | 2011-08-29 | Cal 1 | Plant Operator [96 h]; Other Skill Labour (Civil) [576 h]; Backhoe [12 h] | CC G | WD1 CUL | POWCABL | UTILITY | 820 | G | C020 | 820_AB | UTD | AAu | 10.1 |
| 8200CCG090 |  | Cosnt.Temp.300mm dia.WaterMain (FW203) |  | 32d | 2011-09-12 A | 2011-10-21 A | 8200CCG440b SS, 8200CCG055 | 100% | 2012-02-20 | 2012-03-27 | Cal 1 | Plant Operator [256 h]; Other Skill Labour (Civil) [1536 h]; Backhoe [32 h] | CC G | WD1 CUL | POWCABL | UTILITY | 820 | G | C020 | 820_AB | UTD | AAu | 10.1 |
| 8200CCG095 |  | Water Main Diversion (FW203) | milestone | 0d | 2011-10-21 A | 2011-10-21 A | 8200CCG090 | 100% | 2012-01-16 | 2012-01-16 | Cal 1 |  | CC G | WD1 CUL | POWCABL | UTILITY | 820 | G | C020 | 820_AB | UTD | AAu | 10.1 |
| 8200CCG100 |  | Slew 400KV & 2 Sets 11KV Cables Reinstatement |  | 36d | 2012-09-01 A | 2012-10-17 A | 8200CCG500 FS+48d | 100% |  |  | Cal 1 | Plant Operator [288 h]; Other Skill Labour (Civil) [1728 h]; Backhoe [36 h] | CC G | WD1 CUL | POWCABL | UTILITY | 820 | G | C020 | 820_AB | UTD | AAu | 10.1 |
| 8200CCG110 |  | Reinstate 300mmdia Fresh Water Main (FW203) |  | 30d | 2012-09-01 A | 2012-10-10 A | 8200CCG500 FS+48d | 100% |  |  | Cal 1 | Other Skill Labour (Civil) [1728 h]; Backhoe [36 h]; Plant Operator [288 h] | CC G | WD1 CUL | POWCABL | UTILITY | 820 | G | C020 | 820_AB | UTD | AAu | 10.1 |
| 8200CCG115 |  | Remove Temp.300mm dia.Fresh Water Meter (FW203) |  | 12d | 2012-10-11 A | 2012-10-25 A | 8200CCG110 | 100% |  |  | Cal 1 | Plant Operator [1.92 h]; Other Skill Labour (Civil) [1152 h]; Backhoe [24 h] | CC G | WD1 CUL | POWCABL | UTILITY | 820 | G | C020 | 820_AB | UTD | AAu | 10.1 |
| 8200CCG105 |  | Remove Temp.Support for 400KV &11KV Cables |  | 12d | 2012-10-17 A | 2012-10-31 A | 8200CCG100 FS-1d | 100% |  |  | Cal 1 | Backhoe [24 h]; Plant Operator [192 h]; Other Skill Labour (Civil) [1152 h] | CC G | WD1 CUL | POWCABL | 1 | 820 | G | C020 | 820_AB | UTD | AAu | 10.1 |
| 8200CCG120 |  | Remove Temp.Support for Temp.Fresh Water Main |  | 6d | 2012-10-25 A | 2012-10-31 A | 8200CCG115 FS-1d | 100% |  |  | Cal 1 | Plant Operator [96 h]; Other Skill Labour (Civil) [576 h]; Backhoe [12 h] | CC G | WD1 CUL | POWCABL | 1 | 820 | G | C020 | 820_AB | UTD | AAu | 10.1 |

| ID | WBS | Activity | Type | Duration | Start | Finish | Predecessors | Complete | Planned start | Planned finish | Calendar | Resources | Priority A | Sum1 | TBM UT f | TBM UT s | 820_As-built | Responsible by | LEVEL 1 | LEVEL 2 | LEVEL 3 | SUMMARY | Contracts | Cost Centre | Works Area | Classification of Works | Production Rate | QUANTITY | Phases of Works | TBM DT s | TBM DT f |
| --- | --- | --- | --- | --- | --- | --- | --- | --- | --- | --- | --- | --- | --- | --- | --- | --- | --- | --- | --- | --- | --- | --- | --- | --- | --- | --- | --- | --- | --- | --- | --- |
|  | 90 | **1.1m Dia. Sewer Pipe Diversion** |  |  | 2010-12-14 | 2013-12-21 |  |  |  |  |  |  |  |  |  |  |  |  |  |  |  |  |  |  |  |  |  |  |  |  |  |
| 8200sum610a |  | Obstruction Removal at 1.1m Dia.Sewer Pipe Area (UT) | level of effort | 0d | 2010-12-14 A | 2012-12-07 A |  | 100% | 2010-12-14 | 2010-12-14 |  |  | 4 | S1 | 2013-06-25 | 2013-06-25 | 820_AB |  |  |  |  |  |  |  |  |  |  |  |  |  |  |
| 8200CCG140 |  | Trial Trench & Record |  | 24d | 2011-04-18 A | 2011-05-17 A | 8200CCG390, 8200TMG115, 8200MTG450, 8200CCG135, 8200TMG150 | 100% | 2011-08-31 | 2011-09-30 | Cal 1 | Mobile Crane [48 h]; Other Skill Labour (Civil) [2304 h]; Plant Operator [384 h] |  |  |  |  | 820_AB | AAu | CC G | WD1 CUL | 1.1DSEW | 1 | 820 | G | 10.1 | UTD |  |  |  |  |  |
| 8200CCG145 |  | Sheet Piles Cofferdam 1A |  | 57d | 2011-05-18 A | 2011-07-30 A | 8200CCG140 | 100% | 2011-07-22 | 2011-10-03 | Cal 1 | Mobile Crane [40 h]; Other Skill Labour (Civil) [2880 h]; Plant Operator [640 h]; Sheet piling rig [40] |  |  |  |  | 820_AB | AAu | CC G | WD1 CUL | 1.1DSEW | 1 | 820 | G | 10.1 | UTD | 12m/d +6d Setup | 405m | C050 |  |  |
| 8200sum610 |  | Obstruction Removal at 1.1m Dia.Sewer Pipe Area (DT) | level of effort | 272d | 2011-05-18 A | 2012-03-31 A | 8200CCG145 SS | 100% | 2011-07-22 | 2012-04-18 |  |  | 4 | S1 |  |  | 820_AB |  |  |  |  |  |  |  |  |  |  |  |  | 2012-06-13 | 2012-06-13 |
| 8200CCG150 |  | Expose and Protect 400mm dia.Gas Main (GAS211) |  | 24d | 2011-08-01 A | 2011-08-30 A | 8200CCG145, 8200CCG420 | 100% | 2011-09-08 | 2011-10-11 | Cal 1 | Mobile Crane [48 h]; Other Skill Labour (Civil) [2304 h]; Plant Operator [384 h] |  |  |  |  | 820_AB | AAu | CC G | WD1 CUL | 1.1DSEW | UTILITY | 820 | G | 10.1 | UTD |  |  | C020 |  |  |
| 8200CCG135 |  | Coord'n w/DSD forTemp.Removal ofOverflow Pipe | milestone | 0d | 2011-09-23 A | 2011-09-23 A | 8200TMG115, 8200TMG150 | 100% | 2012-01-16 | 2012-01-16 | Cal 1 |  |  |  |  |  | 820_AB | AAu | CC G | WD1 CUL | 1.1DSEW | 1 | 820 | G | 10.1 | UTD |  |  | C020 |  |  |
| 8200CCG151 |  | Drilling |  | 11d | 2011-11-10 A | 2011-11-23 A | 8200CCG150 | 100% | 2012-01-16 | 2012-01-31 | Cal 1 | Other Skill Labour (Civil) [3456 h]; Plant Operator [576 h]; Roller [72]; Backhoe [72 h] |  |  |  |  | 820_AB | AAu | CC G | WD1 CUL | 1.1DSEW | UTILITY | 820 | G | 10.1 | UTD |  |  | C060 |  |  |
| 8200CCG152 |  | Grouting for MH-1 |  | 6d | 2011-12-20 A | 2011-12-29 A | 8200CCG151, 8200CCG150 | 100% | 2012-01-16 | 2012-01-21 | Cal 1 | Backhoe [24 h]; Other Skill Labour (Civil) [1152 h]; Plant Operator [192 h] |  |  |  |  | 820_AB | AAu | CC G | WD1 CUL | 1.1DSEW | UTILITY | 820 | G | 10.1 | UTD |  | ~26m | C020 |  |  |
| 8200CCG178 |  | Drilling |  | 6d | 2011-12-20 A | 2011-12-29 A |  | 100% | 2012-01-16 | 2012-01-21 | Cal 1 | Plant Operator [576 h]; Roller [72]; Backhoe [72 h]; Other Skill Labour (Civil) [3456 h] |  |  |  |  | 820_AB | AAu | CC G | WD1 CUL | 1.1DSEW | UTILITY | 820 | G | 10.1 | UTD |  |  | C060 |  |  |
| 8200CCG153 |  | Excavate for dewatering well and place blinding |  | 4d | 2011-12-30 A | 2012-01-05 A |  | 100% | 2012-01-16 | 2012-01-19 | Cal 1 | Other Skill Labour (Civil) [1152 h]; Plant Operator [192 h]; Backhoe [24 h] |  |  |  |  | 820_AB | AAu | CC G | WD1 CUL | 1.1DSEW | UTILITY | 820 | G | 10.1 | UTD |  | ~26m | C020 |  |  |
| 8200CCG179 |  | Grouting for MH-2 |  | 9d | 2011-12-30 A | 2012-01-11 A | 8200CCG178, 8200CCG152 | 100% | 2012-01-16 | 2012-01-28 | Cal 1 | Other Skill Labour (Civil) [1152 h]; Plant Operator [192 h]; Backhoe [24 h] |  |  |  |  | 820_AB | AAu | CC G | WD1 CUL | 1.1DSEW | UTILITY | 820 | G | 10.1 | UTD |  | ~26m | C020 |  |  |
| 8200CCG156 |  | Excavate for MH-1 Construction & Shoring Installation |  | 21d | 2012-01-06 A | 2012-02-02 A | 8200CCG151, 8200CCG153 | 100% | 2012-03-01 | 2012-03-24 | Cal 1 | Other Skill Labour (Civil) [3456 h]; Plant Operator [576 h]; Backhoe [72 h] |  |  |  |  | 820_AB | AAu | CC G | WD1 CUL | 1.1DSEW | UTILITY | 820 | G | 10.1 | UTD |  |  | C020 |  |  |
| 8200CCG180 |  | Excavate for dewatering well and place blinding |  | 5d | 2012-01-12 A | 2012-01-17 A | 8200CCG179 | 100% | 2012-01-16 | 2012-01-20 | Cal 1 | Other Skill Labour (Civil) [1152 h]; Plant Operator [192 h]; Backhoe [24 h] |  |  |  |  | 820_AB | AAu | CC G | WD1 CUL | 1.1DSEW | UTILITY | 820 | G | 10.1 | UTD |  | ~26m | C020 |  |  |
| 8200CCG181 |  | Excavate for MH-2 Construction & Shoring Installation |  | 26d | 2012-01-14 A | 2012-02-16 A | 8200CCG178, 8200CCG180 FF | 100% | 2012-01-16 | 2012-02-17 | Cal 1 | Other Skill Labour (Civil) [3456 h]; Plant Operator [576 h]; Backhoe [72 h] |  |  |  |  | 820_AB | AAu | CC G | WD1 CUL | 1.1DSEW | UTILITY | 820 | G | 10.1 | UTD |  |  | C020 |  |  |
| 8200CCG185 |  | Excavate for pipe laying between MH-1 to MH-2 & Shoring Installation |  | 33d | 2012-01-14 A | 2012-02-24 A | 8200CCG181 SS | 100% | 2012-03-06 | 2012-04-19 | Cal 1 | Other Skill Labour (Civil) [1152 h]; Plant Operator [288 h]; Roller [12]; Backhoe [24 h] |  |  |  |  | 820_AB | AAu | CC G | WD1 CUL | 1.1DSEW | UTILITY | 820 | G | 10.1 | UTD |  |  | C020 |  |  |
| 8200CCG172 |  | Construct MH-1 Stage 1 & pump test |  | 10d | 2012-02-03 A | 2012-02-14 A | 8200CCG156, 8200CCG152 | 100% | 2012-09-17 | 2012-09-28 | Cal 1 | Other Skill Labour (Civil) [1728 h]; Plant Operator [144 h]; Backhoe [18 h] |  |  |  |  | 820_AB | AAu | CC G | WD1 CUL | 1.1DSEW | UTILITY | 820 | G | 10.1 | UTD |  |  | C020 |  |  |
| 8200CCG174 |  | Insert DN800 temp pipe and fill gap between temp pipe & DN1800 |  | 5d | 2012-02-15 A | 2012-02-20 A | 8200CCG172 | 100% | 2012-09-29 | 2012-10-06 | Cal 1 | Backhoe [24 h]; Other Skill Labour (Civil) [1152 h]; Plant Operator [288 h]; Roller [12] |  |  |  |  | 820_AB | AAu | CC G | WD1 CUL | 1.1DSEW | UTILITY | 820 | G | 10.1 | UTD |  |  | C020 |  |  |
| 8200CCG182 |  | Construct MH-2 Stage 1 & pump test |  | 10d | 2012-02-17 A | 2012-02-28 A | 8200CCG179, 8200CCG181 | 100% | 2012-10-04 | 2012-10-15 | Cal 1 | Other Skill Labour (Civil) [1728 h]; Plant Operator [144 h]; Backhoe [18 h] |  |  |  |  | 820_AB | AAu | CC G | WD1 CUL | 1.1DSEW | UTILITY | 820 | G | 10.1 | UTD |  |  | C020 |  |  |
| 8200CCG176 |  | Installation of by-pass pipe, benching & Inspection |  | 7d | 2012-02-21 A | 2012-02-28 A | 8200CCG174 | 100% | 2012-10-08 | 2012-10-15 | Cal 1 | Plant Operator [288 h]; Roller [12]; Backhoe [24 h]; Other Skill Labour (Civil) [1152 h] |  |  |  |  | 820_AB | AAu | CC G | WD1 CUL | 1.1DSEW | UTILITY | 820 | G | 10.1 | UTD |  |  | C020 |  |  |
| 8200CCG186 |  | Pipe Laying, air test and concrete surround |  | 12d | 2012-02-25 A | 2012-03-09 A | 8200CCG185 | 100% | 2012-10-12 | 2012-10-26 | Cal 1 | Other Skill Labour (Civil) [1152 h]; Plant Operator [288 h]; Roller [12]; Backhoe [24 h] |  |  |  |  | 820_AB | AAu | CC G | WD1 CUL | 1.1DSEW | UTILITY | 820 | G | 10.1 | UTD |  |  | C020 |  |  |
| 8200CCG183 |  | Insert DN800 temp pipe and fill gap between temp pipe & DN1800 |  | 5d | 2012-02-29 A | 2012-03-05 A | 8200CCG182 | 100% | 2012-10-16 | 2012-10-20 | Cal 1 | Other Skill Labour (Civil) [1152 h]; Plant Operator [288 h]; Roller [12]; Backhoe [24 h] |  |  |  |  | 820_AB | AAu | CC G | WD1 CUL | 1.1DSEW | UTILITY | 820 | G | 10.1 | UTD |  |  | C020 |  |  |
| 8200CCG184 |  | Installation of by-pass pipe, benching & Inspection |  | 7d | 2012-03-05 A | 2012-03-12 A | 8200CCG183 FS-1d | 100% | 2012-10-20 | 2012-10-29 | Cal 1 | Other Skill Labour (Civil) [1152 h]; Plant Operator [288 h]; Roller [12]; Backhoe [24 h] |  |  |  |  | 820_AB | AAu | CC G | WD1 CUL | 1.1DSEW | UTILITY | 820 | G | 10.1 | UTD |  |  | C020 |  |  |
| 8200CCG187 |  | Diversion |  | 4d | 2012-03-15 A | 2012-03-19 A | 8200CCG186, 8200CCG176, 8200CCG184 | 100% | 2012-10-30 | 2012-11-02 | Cal 1 | Other Skill Labour (Civil) [1152 h]; Plant Operator [288 h]; Roller [12]; Backhoe [24 h] |  |  |  |  | 820_AB | AAu | CC G | WD1 CUL | 1.1DSEW | UTILITY | 820 | G | 10.1 | UTD |  |  | C020 |  |  |
| 8200CCG190 |  | Install Casing & Remove Piles (3nos at D/T) |  | 25d | 2012-03-29 A | 2012-05-08 A | 8200CCG189 | 100% | 2012-11-26 | 2012-12-24 | Cal 1 | Pile Removal [3 Nos]; Mobile Crane [24 h]; Other Skill Labour (Civil) [1728 h]; Plant Operator [384 h]; Pile Removal rig [24] |  |  |  |  | 820_AB | AAu | CC G | WD1 CUL | 1.1DSEW | PILEREM | 820 | G | 10.1 | UTD | 4d/Pile+6d Setup | 3nos |  |  |  |
| 8200CCG188 |  | Backfill to 2nd layer waling and construct remaining part of manholes MH-1 & MH-2 |  | 16d | 2012-07-16 A | 2012-09-06 A | 8200CCG187 FS-1d | 100% | 2012-11-02 | 2012-11-20 | Cal 1 | Other Skill Labour (Civil) [576 h]; Plant Operator [96 h]; Backhoe [12 h]; Roller [6] |  |  |  |  | 820_AB | AAu | CC G | WD1 CUL | 1.8DSEW |  |  | G |  |  |  |  |  |  |  |
| 8200CCG189 |  | Remove 1st layer waling and backfill to ground level |  | 4d | 2012-08-18 A | 2012-08-21 A | 8200CCG188 | 100% | 2012-11-21 | 2012-11-24 | Cal 1 | Other Skill Labour (Civil) [576 h]; Plant Operator [96 h]; Backhoe [12 h]; Roller [6] |  |  |  |  | 820_AB | AAu | CC G | WD1 CUL | 1.8DSEW |  |  | G |  |  |  |  |  |  |  |
| 8200CCG192 |  | Install Casing & Remove Piles (4nos at U/T) |  | 40d | 2012-08-28 A | 2012-10-20 A | 8200CCG190 FS+12d | 100% | 2013-01-11 | 2013-03-01 | Cal 1 | Pile Removal [4 Nos]; Mobile Crane [24 h]; Other Skill Labour (Civil) [1728 h]; Plant Operator [384 h]; Pile Removal rig [24] |  |  |  |  | 820_AB | AAu | CC G | WD1 CUL | 1.1DSEW | PILEREM | 820 | G | 10.1 | UTD | 4d/Pile+6d Setup | 3nos |  |  |  |
| 8200CCG210 |  | Backfilling & Reinstate Road Surface |  | 36d | 2012-10-22 A | 2013-12-21 A | 8200CCG174, 8200CCG192, 8200CCG190 | 100% | 2012-11-23 | 2013-01-07 | Cal 1 | Other Skill Labour (Civil) [3456 h]; Plant Operator [288 h]; Roller [36] |  |  |  |  | 820_AB | AAu | CC G | WD1 CUL | 1.1DSEW | 1 | 820 | G | 10.1 | UTD |  |  |  |  |  |

| ID | WBS | Activity | Type | Duration | Start | Finish | Predecessors | Complete | Remaining | Planned start | Planned finish | Total float | Free float | Calendar | Resources | Responsible by | LEVEL 1 | LEVEL 2 | LEVEL 3 | SUMMARY | Contracts | Cost Centre | Works Area | 820_As-built | Classification of Works | Production Rate | QUANTITY | Phases of Works | Priority A | TBM DT s | TBM DT f | Sum1 |
| --- | --- | --- | --- | --- | --- | --- | --- | --- | --- | --- | --- | --- | --- | --- | --- | --- | --- | --- | --- | --- | --- | --- | --- | --- | --- | --- | --- | --- | --- | --- | --- | --- |
|  | 100 | **1.8m Dia. Sewer Pipe Diversion** |  |  | 2010-09-15 | 2015-05-31 |  |  |  |  |  |  |  |  |  |  |  |  |  |  |  |  |  |  |  |  |  |  |  |  |  |  |
| 8200CCG230 |  | Group E Tree Transplant (T9605) Preparation Works |  | 133d | 2010-09-15 A | 2011-03-01 A | 8200TMG165 | 100% |  | 2011-01-08 | 2011-07-02 |  |  | Cal 1 | Other Skill Labour (Civil) [4256 h]; Plant Operator [1064 h]; Mobile Crane [133 h] | AAu | CC G | WD1 CUL | 1.8DSEW | 1 | 820 | G | 10.1 | 820_AB |  |  |  |  |  |  |  |  |
| 8200CCG235 |  | Group D Tree Transplant (T9603 & T9604) Preparation Works |  | 125d | 2010-09-15 A | 2011-02-19 A | 8200TMG165 | 100% |  | 2011-01-08 | 2011-06-22 |  |  | Cal 1 | Other Skill Labour (Civil) [3936 h]; Plant Operator [984 h]; Mobile Crane [123 h] | AAu | CC G | WD1 CUL | 1.8DSEW | 1 | 820 | G | 10.1 | 820_AB |  |  |  |  |  |  |  |  |
| 8200CCG240 |  | Group B Tree Transplant (U0010) Preparation Works |  | 63d | 2010-09-15 A | 2010-11-30 A | 8200TMG165 | 100% |  | 2011-02-28 | 2011-05-23 |  |  | Cal 1 | Plant Operator [496 h]; Mobile Crane [62 h]; Other Skill Labour (Civil) [1984 h] | AAu | CC G | WD1 CUL | 1.8DSEW | 1 | 820 | G | 10.1 | 820_AB |  |  |  |  |  |  |  |  |
| 8200CCG245 |  | Group D Tree Transplant (U0018) Preparation Works |  | 125d | 2010-09-15 A | 2011-02-19 A | 8200TMG165 | 100% |  | 2011-02-28 | 2011-08-11 |  |  | Cal 1 | Other Skill Labour (Civil) [3936 h]; Plant Operator [984 h]; Mobile Crane [123 h] | AAu | CC G | WD1 CUL | 1.8DSEW | 1 | 820 | G | 10.1 | 820_AB |  |  |  |  |  |  |  |  |
| 8200CCG250 |  | Group E Tree Transplant (T9601&T9602)Preparation Works |  | 133d | 2010-09-15 A | 2011-03-01 A | 8200TMG165 | 100% |  | 2011-02-28 | 2011-08-22 |  |  | Cal 1 | Other Skill Labour (Civil) [4256 h]; Plant Operator [1064 h]; Mobile Crane [133 h] | AAu | CC G | WD1 CUL | 1.8DSEW | 1 | 820 | G | 10.1 | 820_AB |  |  |  |  |  |  |  |  |
| 8200CCG255 |  | Trial Trench & Record |  | 24d | 2011-06-21 A | 2011-07-21 A | 8200CCG060, 8200CCG390, 8200MTG450 | 100% |  | 2011-08-31 | 2011-09-30 |  |  | Cal 1 | Other Skill Labour (Civil) [768 h]; Plant Operator [192 h]; Mobile Crane [24 h]; Backhoe [24 h] | AAu | CC G | WD1 CUL | 1.8DSEW | 1 | 820 | G | 10.1 | 820_AB | UTD |  |  |  |  |  |  |  |
| 8200CCG260 |  | Construct Cofferdam 2: MH-4, excavate to formation level and place blinding layer |  | 78d | 2011-07-22 A | 2011-10-29 A | 8200CCG235 FF+24d, 8200CCG255, 8200CCG230 FF+24d, 8200CCG045, 8200CCG140 | 100% |  | 2011-08-31 | 2011-12-05 |  |  | Cal 1 | Plant Operator [640 h]; Mobile Crane [40 h]; Sheet piling rig [40]; Other Skill Labour (Civil) [2880 h] | AAu | CC G | WD1 CUL | 1.8DSEW | 1 | 820 | G | 10.1 | 820_AB | UTD | 12m/d +6d Setup | 405m | C050 |  |  |  |  |
| 8200sum620 |  | Obstruction Removal at 1.8m Dia.Sewer Pipe Area (DT) | level of effort | 272d | 2011-07-22 A | 2015-05-31 | 8200CCG260 SS | 100% | 0d | 2011-08-31 | 2012-05-28 | 367d | 0d |  |  |  |  |  |  |  |  |  |  | 820_AB |  |  |  |  | 4 | 2012-06-13 | 2012-06-13 | S1 |
| 8200CCG302 |  | Construct Cofferdam 1B: MH-3, excavate to formation level and place blinding layer |  | 78d | 2011-08-01 A | 2011-11-08 A |  | 100% |  | 2011-08-31 | 2011-12-05 |  |  | Cal 1 | Other Skill Labour (Civil) [2880 h]; Plant Operator [640 h]; Mobile Crane [40 h]; Sheet piling rig [40] | AAu | CC G | WD1 CUL | 1.8DSEW | 1 | 820 | G | 10.1 | 820_AB | UTD | 12m/d +6d Setup | 405m | C050 |  |  |  |  |
| 8200CCG265 |  | Slew 400KV (CLP221)+11kV (CLP222) w/Temp.Support |  | 6d | 2011-10-24 A | 2011-10-31 A | 8200CCG145, 8200CCG260, 8200CCG420 | 100% |  | 2012-01-16 | 2012-01-21 |  |  | Cal 1 | Other Skill Labour (Civil) [2592 h]; Plant Operator [432 h]; Mobile Crane [18 h]; Backhoe [36 h] | AAu | CC G | WD1 CUL | 1.8DSEW | UTILITY | 820 | G | 10.1 | 820_AB | UTD |  | 52m | C020 |  |  |  |  |
| 8200CCG270 |  | Pipe Formation preparation |  | 6d | 2011-11-01 A | 2011-11-07 A | 8200CCG250, 8200CCG240, 8200CCG245, 8200CCG265 | 100% |  | 2012-02-09 | 2012-02-15 |  |  | Cal 1 | Other Skill Labour (Civil) [1728 h]; Plant Operator [576 h]; Backhoe [36 h]; Roller [36] | AAu | CC G | WD1 CUL | 1.8DSEW | UTILITY | 820 | G | 10.1 | 820_AB | UTD |  |  | C020 |  |  |  |  |
| 8200CCG273 |  | Sewage Pipe Laying with concrete surround (btw MH-3 to MH-4) |  | 8d | 2011-11-21 A | 2011-11-30 A | 8200CCG275 | 100% |  | 2012-02-01 | 2012-02-09 |  |  | Cal 1 | Other Skill Labour (Civil) [2304 h]; Plant Operator [192 h]; Backhoe [24 h] | AAu | CC G | WD1 CUL | 1.8DSEW | UTILITY | 820 | G | 10.1 | 820_AB | UTD |  |  | C020 |  |  |  |  |
| 8200CCG275 |  | Construct Manhole - Stage 1 |  | 5d | 2011-12-09 A | 2011-12-15 A | 8200CCG270 | 100% |  | 2012-01-16 | 2012-01-20 |  |  | Cal 1 | Other Skill Labour (Civil) [1152 h]; Plant Operator [192 h]; Carpenter [1152 h]; Backhoe [24 h] | AAu | CC G | WD1 CUL | 1.8DSEW | UTILITY | 820 | G | 10.1 | 820_AB | UTD |  |  | C020 |  |  |  |  |
| 8200CCG303 |  | Construct Manhole - Stage 1 & pump test |  | 11d | 2011-12-12 A | 2011-12-27 A | 8200CCG302 | 100% |  | 2012-02-01 | 2012-02-13 |  |  | Cal 1 | Other Skill Labour (Civil) [1296 h]; Plant Operator [144 h]; Backhoe [18 h] | AAu | CC G | WD1 CUL | 1.8DSEW | UTILITY | 820 | G | 10.1 | 820_AB | UTD |  |  | C020 |  |  |  |  |
| 8200CCG285 |  | BreakDN1800 pipe top |  | 2d | 2011-12-16 A | 2011-12-17 A | 8200CCG275, 8200CCG273, 8200CCG270 | 100% |  | 2012-01-28 | 2012-01-30 |  |  | Cal 1 | Other Skill Labour (Civil) [216 h]; Plant Operator [48 h]; Backhoe [6 h] | AAu | CC G | WD1 CUL | 1.8DSEW | UTILITY | 820 | G | 10.1 | 820_AB | UTD |  |  | C020 |  |  |  |  |
| 8200CCG295 |  | Construct Manhole - Stage 2 & pump test |  | 2d | 2011-12-19 A | 2011-12-23 A | 8200CCG285 | 100% |  | 2012-02-01 | 2012-02-02 |  |  | Cal 1 | Other Skill Labour (Civil) [1296 h]; Plant Operator [144 h]; Backhoe [18 h] | AAu | CC G | WD1 CUL | 1.8DSEW | UTILITY | 820 | G | 10.1 | 820_AB | UTD |  |  | C020 |  |  |  |  |
| 8200CCG297 |  | Insert Temp Pipe and Filling gap between temp pipe & DN1800 |  | 4d | 2011-12-24 A | 2011-12-31 A | 8200CCG295 | 100% |  | 2012-02-22 | 2012-02-25 |  |  | Cal 1 | Other Skill Labour (Civil) [576 h]; Plant Operator [96 h]; Backhoe [12 h]; Roller [6] | AAu | CC G | WD1 CUL | 1.8DSEW |  |  | G |  | 820_AB |  |  |  |  |  |  |  |  |
| 8200CCG304 |  | Insert Temp Pipe and Filling gap between temp pipe & DN1800 |  | 4d | 2011-12-28 A | 2012-01-03 A | 8200CCG303 | 100% |  | 2012-02-01 | 2012-02-04 |  |  | Cal 1 | Backhoe [18 h]; Other Skill Labour (Civil) [1296 h]; Plant Operator [144 h] | AAu | CC G | WD1 CUL | 1.8DSEW | UTILITY | 820 | G | 10.1 | 820_AB | UTD |  |  | C020 |  |  |  |  |
| 8200CCG298 |  | Installation of by-pass pipe, benching & inspection |  | 6d | 2012-01-03 A | 2012-01-10 A | 8200CCG297 | 100% |  | 2012-02-22 | 2012-02-28 |  |  | Cal 1 | Roller [6]; Other Skill Labour (Civil) [576 h]; Plant Operator [96 h]; Backhoe [12 h] | AAu | CC G | WD1 CUL | 1.8DSEW |  |  | G |  | 820_AB |  |  |  |  |  |  |  |  |
| 8200CCG306 |  | Installation of by-pass pipe, benching & inspection |  | 6d | 2012-01-03 A | 2012-01-10 A |  | 100% |  | 2012-02-22 | 2012-02-28 |  |  | Cal 1 | Other Skill Labour (Civil) [576 h]; Plant Operator [96 h]; Backhoe [12 h]; Roller [6] | AAu | CC G | WD1 CUL | 1.8DSEW |  |  | G |  | 820_AB |  |  |  |  |  |  |  |  |
| 8200CCG299 |  | Diversion |  | 4d | 2012-01-11 A | 2012-01-14 A | 8200CCG298 | 100% |  | 2012-01-18 | 2012-01-21 |  |  | Cal 1 | Other Skill Labour (Civil) [576 h]; Plant Operator [96 h]; Backhoe [12 h]; Roller [6] | AAu | CC G | WD1 CUL | 1.8DSEW |  |  | G |  | 820_AB |  |  |  |  |  |  |  |  |
| 8200CCG307 |  | Diversion |  | 4d | 2012-01-11 A | 2012-01-14 A | 8200CCG306 | 100% |  | 2012-01-18 | 2012-01-21 |  |  | Cal 1 | Other Skill Labour (Civil) [576 h]; Plant Operator [96 h]; Backhoe [12 h]; Roller [6] | AAu | CC G | WD1 CUL | 1.8DSEW |  |  | G |  | 820_AB |  |  |  |  |  |  |  |  |
| 8200CCG299a |  | Make good manhole wall at original pipe opening |  | 4d | 2012-01-26 A | 2012-01-30 A | 8200CCG299 FS+7d | 100% |  | 2012-08-31 | 2012-09-04 |  |  | Cal 1 | Backhoe [12 h]; Roller [6]; Other Skill Labour (Civil) [576 h]; Plant Operator [96 h] | AAu | CC G | WD1 CUL | 1.8DSEW |  |  | G |  | 820_AB |  |  |  |  |  |  |  |  |
| 8200CCG308 |  | Make good manhole wall at original pipe opening |  | 4d | 2012-01-26 A | 2012-01-30 A | 8200CCG307 FS+7d | 100% |  | 2012-08-31 | 2012-09-04 |  |  | Cal 1 | Other Skill Labour (Civil) [576 h]; Plant Operator [96 h]; Backhoe [12 h]; Roller [6] | AAu | CC G | WD1 CUL | 1.8DSEW |  |  | G |  | 820_AB |  |  |  |  |  |  |  |  |
| 8200CCG299b |  | Demolish pile cap and expose existing obstruction pile |  | 3d | 2012-01-31 A | 2012-02-02 A | 8200CCG299a | 100% |  | 2012-09-05 | 2012-09-07 |  |  | Cal 1 | Other Skill Labour (Civil) [576 h]; Plant Operator [96 h]; Backhoe [12 h]; Roller [6] | AAu | CC G | WD1 CUL | 1.8DSEW |  |  | G |  | 820_AB |  |  |  |  |  |  |  |  |
| 8200CCG309 |  | Demolish pile cap and expose existing obstruction pile |  | 3d | 2012-01-31 A | 2012-02-02 A | 8200CCG307, 8200CCG308 | 100% |  | 2012-09-05 | 2012-09-07 |  |  | Cal 1 | Backhoe [12 h]; Other Skill Labour (Civil) [576 h]; Plant Operator [96 h]; Roller [6] | AAu | CC G | WD1 CUL | 1.8DSEW |  |  | G |  | 820_AB |  |  |  |  |  |  |  |  |
| 8200CCG299c |  | Backfill to 2nd layer waling and construct remaining part of manhole |  | 13d | 2012-02-03 A | 2012-02-17 A | 8200CCG299b | 100% |  | 2012-09-08 | 2012-09-25 |  |  | Cal 1 | Other Skill Labour (Civil) [576 h]; Plant Operator [96 h]; Backhoe [12 h]; Roller [6] | AAu | CC G | WD1 CUL | 1.8DSEW |  |  | G |  | 820_AB |  |  |  |  |  |  |  |  |
| 8200CCG311 |  | Install guide steel liner |  | 3d | 2012-02-03 A | 2012-02-06 A | 8200CCG309 | 100% |  | 2012-09-08 | 2012-09-12 |  |  | Cal 1 | Other Skill Labour (Civil) [576 h]; Plant Operator [96 h]; Backhoe [12 h]; Roller [6] | AAu | CC G | WD1 CUL | 1.8DSEW |  |  | G |  | 820_AB |  |  |  |  |  |  |  |  |
| 8200CCG312 |  | Backfill to 2nd layer waling and construct remaining part of manhole |  | 14d | 2012-02-07 A | 2012-02-22 A | 8200CCG311, 8200CCG309 | 100% |  | 2012-09-13 | 2012-09-29 |  |  | Cal 1 | Other Skill Labour (Civil) [576 h]; Plant Operator [96 h]; Backhoe [12 h]; Roller [6] | AAu | CC G | WD1 CUL | 1.8DSEW |  |  | G |  | 820_AB |  |  |  |  |  |  |  |  |
| 8200CCG299d |  | Remove 1st layer waling and backfill to ground level |  | 7d | 2012-02-18 A | 2012-02-25 A | 8200CCG299c | 100% |  | 2012-09-26 | 2012-10-05 |  |  | Cal 1 | Other Skill Labour (Civil) [576 h]; Plant Operator [96 h]; Backhoe [12 h]; Roller [6] | AAu | CC G | WD1 CUL | 1.8DSEW |  |  | G |  | 820_AB |  |  |  |  |  |  |  |  |
| 8200CCG313 |  | Remove 1st layer waling and backfill to ground level |  | 10d | 2012-02-23 A | 2012-03-05 A | 8200CCG312 FF, 8200CCG312 | 100% |  | 2012-10-03 | 2012-10-13 |  |  | Cal 1 | Other Skill Labour (Civil) [576 h]; Plant Operator [96 h]; Backhoe [12 h]; Roller [6] | AAu | CC G | WD1 CUL | 1.8DSEW |  |  | G |  | 820_AB |  |  |  |  |  |  |  |  |
| 8200CCG301 |  | Remove 1 no. of dia. 500 pile |  | 10d | 2012-02-27 A | 2012-03-08 A | 8200CCG295, 8200CCG299d, 8200CCG297 | 100% |  | 2012-10-06 | 2012-10-17 |  |  | Cal 1 | Pile Removal [1 Nos]; Other Skill Labour (Civil) [2304 h]; Plant Operator [384 h]; Mobile Crane [24 h]; Pile Removal rig [24] | AAu | CC G | WD1 CUL | 1.8DSEW | PILEREM | 820 | G | 10.1 | 820_AB | UTD | 6d/Pile+6d Setup | 3nos. |  |  |  |  |  |
| 8200CCG314 |  | Remove 2 no. of dia. 500 pile |  | 20d | 2012-03-09 A | 2012-03-31 A | 8200CCG301, 8200CCG313 | 100% |  | 2012-10-18 | 2012-11-10 |  |  | Cal 1 | Pile Removal [2 Nos]; Other Skill Labour (Civil) [2304 h]; Plant Operator [384 h]; Mobile Crane [24 h]; Pile Removal rig [24] | AAu | CC G | WD1 CUL | 1.8DSEW | PILEREM | 820 | G | 10.1 | 820_AB | UTD | 6d/Pile+6d Setup | 3nos. |  |  |  |  |  |

| ID | WBS | Activity | Type | Duration | Start | Finish | Predecessors | Complete | Planned start | Planned finish | Calendar | Resources | Responsible by | LEVEL 1 | LEVEL 2 | LEVEL 3 | SUMMARY | Contracts | Cost Centre | Works Area | Phases of Works | Classification of Works | 820_As-built | Priority A | Sum1 | TBM UT f | TBM UT s | Production Rate | QUANTITY |
| --- | --- | --- | --- | --- | --- | --- | --- | --- | --- | --- | --- | --- | --- | --- | --- | --- | --- | --- | --- | --- | --- | --- | --- | --- | --- | --- | --- | --- | --- |
|  | 110 | **Removal of Piles: P1 to P3 & P9** |  |  | 2010-07-19 | 2011-04-30 |  |  |  |  |  |  |  |  |  |  |  |  |  |  |  |  |  |  |  |  |  |  |  |
| 8200CCG385 |  | Implement TTM | milestone | 0d | 2010-07-19 A | 2010-07-19 A | 8200TMG150 FF | 100% | 2011-06-28 | 2011-06-28 | Cal 1 |  | AAu | CC G | WD1 CUL | RMPI1-9 | 1 | 820 | G | 10.1 | C040 | RRIW | 820_AB |  |  |  |  |  |  |
| 8200CCG390 |  | Modification Works for Temp.Traffic Diversion |  | 98d | 2010-07-20 A | 2010-11-19 A | 8200CCG385 | 100% | 2011-06-29 | 2011-11-01 | Cal 1 | Other Skill Labour (Civil) [10368 h] | AAu | CC G | WD1 CUL | RMPI1-9 | 1 | 820 | G | 10.1 | C040 | RRIW | 820_AB |  |  |  |  |  |  |
| 8200CCG332 |  | Open Cut to Expose Top Slab of Culvert Partially |  | 3d | 2010-12-10 A | 2010-12-13 A | 8200CCG075, 8200DSG165 | 100% | 2011-11-01 | 2011-11-03 | Cal 6 | Other Skill Labour (Civil) [288 h]; Plant Operator [48 h]; Backhoe [6 h] | AAu | CC G | WD1 CUL | RMPI1-9 | 1 | 820 | G | 10.1 |  | RRIW | 820_AB |  |  |  |  |  |  |
| 8200CCG335 |  | Break Top Slab of Box Culvert |  | 70d | 2010-12-14 A | 2011-03-12 A | 8200CCG332, 8200CCG075 | 100% | 2011-11-04 | 2012-01-31 | Cal 6 | Other Skill Labour (Civil) [864 h]; Plant Operator [192 h]; Backhoe [12 h]; Drilling Jumbo [12 h] | AAu | CC G | WD1 CUL | RMPI1-9 | 1 | 820 | G | 10.1 |  | RRIW | 820_AB |  |  |  |  |  |  |
| 8200sum630 |  | WD1 Piles Removal (P1,P3 & P9) (UT) | level of effort | 117d | 2010-12-14 A | 2011-04-09 A | 8200CCG335 SS | 100% | 2011-03-13 | 2011-07-07 |  |  |  |  |  |  |  |  |  |  |  |  | 820_AB | 4 | S1 | 2013-06-25 | 2013-06-25 |  |  |
| 8200CCG350 |  | Mobilization |  | 56d | 2011-01-04 A | 2011-03-14 A | 8200CCG075, 8200CCG342 FF | 100% | 2011-11-07 | 2012-01-13 | Cal 1 |  | AAu | CC G | WD1 CUL | RMPI1-9 | 1 | 820 | G | 10.1 |  | RRIW | 820_AB |  |  |  |  |  |  |
| 8200CCG395 |  | Install Casing & Remove Pile: P9 |  | 60d | 2011-01-04 A | 2011-03-21 A | 8200CCG375, 8200CCG390 | 100% | 2011-03-14 | 2011-11-25 | Cal 6a (Extend Dry Season to Apr) | Backhoe [12 h]; Pile Removal [1 Nos]; Other Skill Labour (Civil) [1152 h]; Plant Operator [192 h] | AAu | CC G | WD1 CUL | RMPI1-9 | PILEREM | 820 | G | 10.1 |  | RRIW | 820_AB |  |  |  |  | 12d/Pile | 1no. |
| 8200CCG375 |  | Install Temp. Cofferdam & Remove Pile: P3 |  | 6d | 2011-01-28 A | 2011-02-10 A | 8200CCG350 SS+18d | 100% | 2012-01-19 | 2012-02-01 | Cal 6a (Extend Dry Season to Apr) | Pile Removal [1 Nos]; Other Skill Labour (Civil) [1152 h]; Plant Operator [192 h]; Backhoe [12 h] | AAu | CC G | WD1 CUL | RMPI1-9 | PILEREM | 820 | G | 10.1 |  | RRIW | 820_AB |  |  |  |  | 12d/Pile | 1no. |
| 8200CCG365 |  | Shift Temp.Cofferdam & Remove Pile: P2 |  | 26d | 2011-02-11 A | 2011-03-12 A | 8200CCG375 | 100% | 2011-03-12 | 2011-04-12 | Cal 6a (Extend Dry Season to Apr) | Pile Removal [1 Nos]; Other Skill Labour (Civil) [1152 h]; Plant Operator [192 h]; Mobile Crane [12 h] | AAu | CC G | WD1 CUL | RMPI1-9 | PILEREM | 820 | G | 10.1 |  | RRIW | 820_AB |  |  |  |  | 12d/Pile | 1no. |
| 8200CCG380 |  | Fill Lean Concrete & Reinstate BottomSlab for P3 |  | 25d | 2011-02-11 A | 2011-03-11 A | 8200CCG375 | 100% | 2012-02-09 | 2012-03-08 | Cal 6a (Extend Dry Season to Apr) | Other Skill Labour (Civil) [1152 h]; Plant Operator [96 h]; Backhoe [12 h] | AAu | CC G | WD1 CUL | RMPI1-9 | PILEREM | 820 | G | 10.1 |  | RRIW | 820_AB |  |  |  |  |  |  |
| 8200CCG342 |  | Install Temp.Working Platform & Cofferdam |  | 12d | 2011-02-28 A | 2011-03-12 A | 8200CCG335 SS+2d | 100% | 2011-06-21 | 2011-07-05 | Cal 1 | Other Skill Labour (Civil) [864 h]; Plant Operator [96 h]; Mobile Crane [12 h] | AAu | CC G | WD1 CUL | RMPI1-9 | 1 | 820 | G | 10.1 |  | RRIW | 820_AB |  |  |  |  |  |  |
| 8200CCG370 |  | Fill Lean Concrete & Reinstate BottomSlab for P2 |  | 31d | 2011-03-11 A | 2011-04-16 A | 8200CCG365 | 100% | 2011-11-01 | 2011-12-06 | Cal 6a (Extend Dry Season to Apr) | Other Skill Labour (Civil) [960 h]; Plant Operator [160 h]; Backhoe [20 h] | AAu | CC G | WD1 CUL | RMPI1-9 | PILEREM | 820 | G | 10.1 |  | RRIW | 820_AB |  |  |  |  |  |  |
| 8200CCG355 |  | Install Casing & Remove Pile: P1 |  | 14d | 2011-03-15 A | 2011-03-30 A | 8200CCG045, 8200CCG335, 8200DSG200, 8200CCG342, 8200CCG350 | 100% | 2011-11-01 | 2011-11-16 | Cal 6a (Extend Dry Season to Apr) | Pile Removal [1 Nos]; Other Skill Labour (Civil) [1152 h]; Plant Operator [192 h]; Backhoe [12 h]; Mobile Crane [12 h] | AAu | CC G | WD1 CUL | RMPI1-9 | PILEREM | 820 | G | 10.1 |  | RRIW | 820_AB |  |  |  |  | 12d/Pile | 1no. |
| 8200CCG400 |  | Fill Lean Concrete & Reinstate BottomSlab for P9 |  | 16d | 2011-03-22 A | 2011-04-09 A | 8200sum630 FF, 8200y900 FF, 8200CCG395 | 100% | 2011-11-01 | 2011-11-18 | Cal 6a (Extend Dry Season to Apr) | Other Skill Labour (Civil) [768 h]; Plant Operator [128 h]; Backhoe [16 h] | AAu | CC G | WD1 CUL | RMPI1-9 | PILEREM | 820 | G | 10.1 |  | RRIW | 820_AB |  |  |  |  |  |  |
| 8200CCG360 |  | Fill LeanConcrete &Reinstate BottomSlab for P1 |  | 23d | 2011-03-31 A | 2011-04-30 A | 8200CCG355 | 100% | 2011-11-01 | 2011-11-26 | Cal 6a (Extend Dry Season to Apr) | Other Skill Labour (Civil) [336 h]; Plant Operator [56 h]; Backhoe [7 h] | AAu | CC G | WD1 CUL | RMPI1-9 | PILEREM | 820 | G | 10.1 |  | RRIW | 820_AB |  |  |  |  |  |  |
|  | 120 | **Removal of Piles: P4 to P6 & P7 &P8** |  |  | 2011-04-07 | 2012-02-07 |  |  |  |  |  |  |  |  |  |  |  |  |  |  |  |  |  |  |  |  |  |  |  |
| 8200CCG400a |  | Working Platform for Prebore H Piles |  | 19d | 2011-04-07 A | 2011-05-05 A | 8200CCG375, 8200CCG370, 8200CCG380, 8200CCG355 | 100% | 2011-06-21 | 2011-07-14 | Cal 1 | Other Skill Labour (Civil) [288 h] | AAu | CC G | WD1 CUL | RMPI4-8 |  |  | G |  |  |  | 820_AB |  |  |  |  |  |  |
| 8200sum640 |  | WD1Pre-bored Socket H-piles & Pile Cap (5nos..) | level of effort | 125d | 2011-04-07 A | 2011-08-09 A | 8200CCG400a SS | 100% | 2011-06-21 | 2011-10-23 |  |  |  |  |  |  |  |  |  |  |  |  | 820_AB | 4 | S1 |  |  |  |  |
| 8200CCG410 |  | Install 5 nos.Pre-bored Socket H-piles |  | 17d | 2011-05-06 A | 2011-05-28 A | 8200CCG395, 8200CCG400a, 8200CCG375, 8200CCG360 | 100% | 2011-06-21 | 2011-07-12 | Cal 1 | nos. of Pile Installation [5 Nos]; Other Skill Labour (Civil) [2160 h]; Plant Operator [480 h]; Backhoe [30 h]; Socketed H-pile Rig [30 h] | AAu | CC G | WD1 CUL | RMPI4-8 | 1 | 820 | G | 10.1 | C060 | RRIW | 820_AB |  |  |  |  |  |  |
| 8200CCG420 |  | Sheet Pile for Cofferdam |  | 23d | 2011-05-30 A | 2011-06-28 A | 8200CCG140, 8200CCG255, 8200MTG450, 8200CCG410 | 100% | 2011-07-22 | 2011-08-18 | Cal 1 | Excavation - Soft [405 m3]; Other Skill Labour (Civil) [1440 h]; Plant Operator [240 h]; Backhoe [30 h]; Sheet piling rig [30] | AAu | CC G | WD1 CUL | RMPI4-8 | 1 | 820 | G | 10.1 | C050 | RRIW | 820_AB |  |  |  |  | 12m/d+6d Setup | ~405m |
| 8200CCG420a |  | Bulk Excqavation to Expose Top Slab of Culvert |  | 10d | 2011-06-20 A | 2011-07-02 A | 8200CCG420 FS-7d | 100% | 2011-06-21 | 2011-07-02 | Cal 1 | Excavation - Soft [405 m3]; Other Skill Labour (Civil) [1440 h]; Plant Operator [240 h]; Backhoe [30 h]; Sheet piling rig [30] | AAu | CC G | WD1 CUL | RMPI4-8 | 1 | 820 | G | 10.1 | C050 | RRIW | 820_AB |  |  |  |  | 12m/d+6d Setup | ~405m |
| 8200CCG420b |  | Place Concrete Block Wall |  | 2d | 2011-06-20 A | 2011-06-22 A | 8200CCG420 FS-7d | 100% | 2011-06-21 | 2011-06-22 | Cal 1 | Excavation - Soft [405 m3]; Other Skill Labour (Civil) [1440 h]; Plant Operator [240 h]; Backhoe [30 h]; Sheet piling rig [30] | AAu | CC G | WD1 CUL | RMPI4-8 | 1 | 820 | G | 10.1 | C050 | RRIW | 820_AB |  |  |  |  | 12m/d+6d Setup | ~405m |
| 8200CCG430 |  | Demolish TopSlab above PilesP1~ P3 & P9 |  | 11d | 2011-07-04 A | 2011-07-16 A | 8200CCG420a | 100% | 2011-08-31 | 2011-09-14 | Cal 1 | Other Skill Labour (Civil) [576 h]; Plant Operator [48 h]; Backhoe [6 h] | AAu | CC G | WD1 CUL | RMPI4-8 | 1 | 820 | G | 10.1 |  | RRIW | 820_AB |  |  |  |  |  |  |
| 8200CCG420c |  | Waling Installtion |  | 16d | 2011-07-05 A | 2011-07-23 A | 8200CCG420a, 8200CCG420b | 100% | 2011-08-31 | 2011-09-21 | Cal 1 | Excavation - Soft [405 m3]; Other Skill Labour (Civil) [1440 h]; Plant Operator [240 h]; Backhoe [30 h]; Sheet piling rig [30] | AAu | CC G | WD1 CUL | RMPI4-8 | 1 | 820 | G | 10.1 | C050 | RRIW | 820_AB |  |  |  |  | 12m/d+6d Setup | ~405m |
| 8200CCG425 |  | Blinding Slab |  | 3d | 2011-07-25 A | 2011-07-27 A | 8200CCG375, 8200CCG420, 8200CCG420c, 8200CCG410 | 100% | 2011-08-31 | 2011-09-02 | Cal 1 | Other Skill Labour (Civil) [864 h]; Plant Operator [48 h]; Backhoe [6 h] | AAu | CC G | WD1 CUL | RMPI4-8 | 1 | 820 | G | 10.1 |  | RRIW | 820_AB |  |  |  |  |  |  |
| 8200CCG435 |  | Formwork & Planking |  | 8d | 2011-07-28 A | 2011-08-05 A | 8200CCG430 | 100% | 2011-08-31 | 2011-09-08 | Cal 1 | Other Skill Labour (Civil) [1008 h]; Plant Operator [168 h]; Backhoe [21 h]; Steel Fixer [1008 h]; Concretor [1008 h] | AAu | CC G | WD1 CUL | RMPI4-8 | 1 | 820 | G | 10.1 |  | RRIW | 820_AB |  |  |  |  |  |  |
| 8200CCG437 |  | Reinstate Top Slab and Corbel Beams |  | 27d | 2011-08-06 A | 2011-09-09 A | 8200CCG435, 8200sum640 FF, 8200CCG425, 8200CCG430, 8200y910 FF | 100% | 2011-08-31 | 2011-10-06 | Cal 1 | Other Skill Labour (Civil) [2208 h]; Plant Operator [184 h]; Backhoe [23 h]; Concretor [1104 h]; Steel Fixer [1104 h] | AAu | CC G | WD1 CUL | RMPI4-8 | 1 | 820 | G | 10.1 |  | RRIW | 820_AB |  |  |  |  |  |  |
| 8200CCG438 |  | Concrete Curing |  | 28d | 2011-09-09 A | 2011-10-07 A | 8200CCG437 | 100% | 2012-01-28 | 2012-02-24 |  |  | AAu | CC G | WD1 CUL | RMPI4-8 | 1 | 820 | G | 10.1 |  | RRIW | 820_AB |  |  |  |  |  |  |
| 8200CCG440a |  | Slew 400kV Cable to P1 to P3 |  | 10d | 2011-09-19 A | 2011-10-01 A | 8200CCG437 FS+7d | 100% | 2012-02-06 | 2012-02-16 | Cal 1 |  | AAu | CC G | WD1 CUL | RMPI4-8 |  |  | G |  |  |  | 820_AB |  |  |  |  |  |  |
| 8200CCG440b |  | Divert Watermain (FW203) |  | 6d | 2011-10-01 A | 2011-10-21 A | 8200CCG437, 8200CCG440a FS-1d | 100% | 2012-02-20 | 2012-02-25 | Cal 1 |  | AAu | CC G | WD1 CUL | RMPI4-8 |  |  | G |  |  |  | 820_AB |  |  |  |  |  |  |
| 8200CCG439 |  | Installation of Jacks |  | 8d | 2011-10-07 A | 2011-10-14 A | 8200CCG438 | 100% | 2012-02-25 | 2012-03-03 |  | Other Skill Labour (Civil) [2208 h]; Plant Operator [184 h]; Backhoe [23 h]; Steel Fixer [1104 h]; Concretor [1104 h] | AAu | CC G | WD1 CUL | RMPI4-8 | 1 | 820 | G | 10.1 |  | RRIW | 820_AB |  |  |  |  |  |  |
| 8200CCG450 |  | Saw Cut Roof over P4 to P6, P7 & P8 |  | 17d | 2011-10-13 A | 2011-10-31 A | 8200CCG447, 8200CCG445 | 100% | 2012-04-13 | 2012-05-05 | Cal 1 | Backhoe [16 h]; Other Skill Labour (Civil) [1536 h]; Plant Operator [128 h] | AAu | CC G | WD1 CUL | RMPI4-8 | 1 | 820 | G | 10.1 |  | RRIW | 820_AB |  |  |  |  |  |  |
| 8200sum642 |  | WD1 Piles Removal (P4,P6,P7 & P8) (UT) | level of effort | 282d | 2011-10-13 A | 2011-12-07 A | 8200CCG450 SS | 100% | 2012-04-13 | 2013-01-19 |  |  |  |  |  |  |  |  |  |  |  |  | 820_AB | 4 | S1 | 2013-06-25 | 2013-06-25 |  |  |
| 8200CCG440c |  | Water Suspension & Connection |  | 6d | 2011-10-21 A | 2011-10-28 A | 8200CCG440b FS-1d | 100% | 2012-02-25 | 2012-03-02 | Cal 1 |  | AAu | CC G | WD1 CUL | RMPI4-8 |  |  | G |  |  |  | 820_AB |  |  |  |  |  |  |
| 8200CCG440d |  | Backfilling |  | 6d | 2011-10-28 A | 2011-11-04 A | 8200CCG440c FS-1d | 100% | 2012-03-02 | 2012-03-08 | Cal 1 |  | AAu | CC G | WD1 CUL | RMPI4-8 |  |  | G |  |  |  | 820_AB |  |  |  |  |  |  |
| 8200CCG460 |  | Install Temp.Working Platform & Cofferdam of Work Area |  | 7d | 2011-11-01 A | 2011-11-09 A | 8200CCG450 FS-15d, 8200CCG440a, 8200CCG440b | 100% | 2012-01-16 | 2012-01-26 | Cal 1 | Other Skill Labour (Civil) [1152 h]; Plant Operator [96 h]; Backhoe [12 h] | AAu | CC G | WD1 CUL | RMPI4-8 | 1 | 820 | G | 10.1 |  | RRIW | 820_AB |  |  |  |  |  |  |
| 8200CCG445 |  | Excavation to Expose P4 to P8 |  | 12d | 2011-11-04 A | 2011-11-18 A | 8200CCG440d FS-1d, 8200CCG439 | 100% | 2012-03-08 | 2012-03-21 | Cal 1 |  | AAu | CC G | WD1 CUL | RMPI4-8 |  |  | G |  |  |  | 820_AB |  |  |  |  |  |  |
| 8200CCG485 |  | Shift Temp.Cofferdam & Remove Piles: P8 |  | 22d | 2011-11-07 A | 2011-12-02 A | 8200CCG460 | 100% | 2012-12-17 | 2013-01-14 | Cal 6 | Pile Removal [1 Nos]; Other Skill Labour (Civil) [2304 h]; Plant Operator [384 h]; Mobile Crane [24 h] | AAu | CC G | WD1 CUL | RMPI4-8 | PILEREM | 820 | G | 10.1 |  | RRIW | 820_AB |  |  |  |  | 12d/Pile | 2nos. |
| 8200CCG465 |  | Install Casing & Remove Piles: P5 |  | 30d | 2011-11-14 A | 2011-12-19 A | 8200CCG460 FS-1d, 8200CCG095 | 100% | 2012-11-01 | 2012-12-05 | Cal 6 | Pile Removal [1 Nos]; Other Skill Labour (Civil) [2560 h]; Plant Operator [640 h]; Mobile Crane [40 h]; Pile Removal rig [40] | AAu | CC G | WD1 CUL | RMPI4-8 | PILEREM | 820 | G | 10.1 |  | RRIW | 820_AB |  |  |  |  | 12d/Pile | 2nos. |
| 8200CCG447 |  | Installation of Concrete Block Wall |  | 14d | 2011-11-18 A | 2011-12-05 A | 8200CCG445 FS-1d | 100% | 2012-03-21 | 2012-04-11 | Cal 1 |  | AAu | CC G | WD1 CUL | RMPI4-8 |  |  | G |  |  |  | 820_AB |  |  |  |  |  |  |
| 8200CCG495 |  | Shift Temp.Cofferdam & Remove Piles: P6 |  | 26d | 2011-11-19 A | 2011-12-20 A | 8200CCG460 | 100% | 2013-01-05 | 2013-02-04 | Cal 6 | Pile Removal [1 Nos]; Other Skill Labour (Civil) [2304 h]; Plant Operator [384 h]; Mobile Crane [24 h] | AAu | CC G | WD1 CUL | RMPI4-8 | PILEREM | 820 | G | 10.1 |  | RRIW | 820_AB |  |  |  |  | 12d/Pile | 2nos. |
| 8200CCG490 |  | Fill Lean Concrete & Reinstate BottomSlab for P8 |  | 3d | 2011-12-03 A | 2011-12-07 A | 8200y920 FF, 8200CCG485, 8200sum642 FF | 100% | 2013-01-17 | 2013-01-19 | Cal 6 | Plant Operator [112 h]; Backhoe [14 h]; Other Skill Labour (Civil) [1344 h] | AAu | CC G | WD1 CUL | RMPI4-8 | PILEREM | 820 | G | 10.1 |  | RRIW | 820_AB |  |  |  |  |  |  |
| 8200CCG470 |  | Fill Lean Concrete& Reinstate BottomSlab forP5 |  | 3d | 2011-12-20 A | 2011-12-23 A | 8200CCG465, 8200y920 FF | 100% | 2012-11-29 | 2012-12-01 | Cal 6 | Other Skill Labour (Civil) [1344 h]; Backhoe [14 h]; Plant Operator [112 h] | AAu | CC G | WD1 CUL | RMPI4-8 | PILEREM | 820 | G | 10.1 |  | RRIW | 820_AB |  |  |  |  |  |  |
| 8200CCG590 |  | Fill Lean Concrete & Reinstate BottomSlab for P6 |  | 3d | 2011-12-21 A | 2011-12-24 A | 8200y920 FF, 8200CCG495 | 100% | 2013-02-02 | 2013-02-05 | Cal 6 | Other Skill Labour (Civil) [1344 h]; Plant Operator [112 h]; Backhoe [14 h] | AAu | CC G | WD1 CUL | RMPI4-8 | PILEREM | 820 | G | 10.1 |  | RRIW | 820_AB |  |  |  |  |  |  |
| 8200CCG595 |  | Shift Temp.Cofferdam & Remove Piles: P7 |  | 11d | 2011-12-23 A | 2012-01-09 A | 8200CCG495 | 100% | 2013-01-21 | 2013-02-01 | Cal 6 | Pile Removal [1 Nos]; Other Skill Labour (Civil) [2304 h]; Plant Operator [384 h]; Mobile Crane [24 h] | AAu | CC G | WD1 CUL | RMPI4-8 | PILEREM | 820 | G | 10.1 |  | RRIW | 820_AB |  |  |  |  | 12d/Pile | 2nos. |
| 8200CCG610 |  | Fill Lean Concrete & Reinstate BottomSlab for P7 |  | 3d | 2012-01-10 A | 2012-01-13 A | 8200y920 FF, 8200CCG595 | 100% | 2013-02-25 | 2013-02-27 | Cal 6 | Other Skill Labour (Civil) [1344 h]; Plant Operator [112 h]; Backhoe [14 h] | AAu | CC G | WD1 CUL | RMPI4-8 | PILEREM | 820 | G | 10.1 |  | RRIW | 820_AB |  |  |  |  |  |  |
| 8200CCG475 |  | Shift Temp.Cofferdam & Remove Pile: P4 |  | 16d | 2012-01-14 A | 2012-02-04 A | 8200CCG465, 8200CCG470 FS-1d | 100% | 2012-12-01 | 2012-12-19 | Cal 6 | Pile Removal [1 Nos]; Other Skill Labour (Civil) [1152 h]; Plant Operator [192 h]; Mobile Crane [12 h] | AAu | CC G | WD1 CUL | RMPI4-8 | PILEREM | 820 | G | 10.1 |  | RRIW | 820_AB |  |  |  |  | 12d/Pile | 1no. |
| 8200CCG480 |  | Fill Lean Concrete & Reinstate BottomSlab for P4 |  | 3d | 2012-02-05 A | 2012-02-07 A | 8200y920 FF, 8200CCG475 | 100% | 2012-11-19 | 2012-11-21 | Cal 6 | Other Skill Labour (Civil) [1152 h]; Plant Operator [96 h]; Backhoe [12 h] | AAu | CC G | WD1 CUL | RMPI4-8 | PILEREM | 820 | G | 10.1 |  | RRIW | 820_AB |  |  |  |  |  |  |

Notes:
- 8200CCG375: Basis & Assumptions: if 8d/Pile (Japan Method) otherwise 24d
- 8200CCG365: Basis & Assumptions: if 8d/Pile (Japan Method) otherwise 24d
- 8200CCG355: Basis & Assumptions: if 8d/Pile (Japan Method) otherwise 18d
- 8200CCG485: Basis & Assumptions: if 8d/Pile (Japan Method) otherwise 30d
- 8200CCG465: Basis & Assumptions: if 8d/Pile (Japan Method) otherwise 24d
- 8200CCG495: Basis & Assumptions: if 8d/Pile (Japan Method) otherwise 30d
- 8200CCG595: Basis & Assumptions: if 8d/Pile (Japan Method) otherwise 30d
- 8200CCG475: Basis & Assumptions: if 8d/Pile (Japan Method) otherwise 18d

| ID | WBS | Activity | Type | Duration | Start | Finish | Predecessors | Complete | Planned start | Planned finish | Calendar | Resources | Responsible by | LEVEL 1 | LEVEL 2 | LEVEL 3 | SUMMARY | Contracts | Cost Centre | Works Area | Classification of Works | 820_As-built | Priority A | TBM DT s | TBM DT f | Sum1 | Order | TBM UT f | TBM UT s | Responsible (bm makes Global) | Phases of Works |
| --- | --- | --- | --- | --- | --- | --- | --- | --- | --- | --- | --- | --- | --- | --- | --- | --- | --- | --- | --- | --- | --- | --- | --- | --- | --- | --- | --- | --- | --- | --- | --- |
|  | 130 | **Reinstatement** |  |  | 2012-02-20 | 2013-10-29 |  |  |  |  |  |  |  |  |  |  |  |  |  |  |  |  |  |  |  |  |  |  |  |  |  |
| 8200CCG500 |  | Reinstate Box Culvert (Invert & Roof) |  | 127d | 2012-02-20 A | 2012-08-04 A | 8200CCG470, 8200CCG485 FF+12d, 8200CCG490 FF+12d | 100% | 2012-08-31 | 2013-02-04 | Cal 1 | Carpenter [4512 h]; Backhoe [94 h]; Mobile Crane [94 h]; Other Skill Labour (Civil) [9024 h]; Plant Operator [752 h] | AAu | CC G | WD1 CUL | REINSTA | 1 | 820 | G | 10.1 | RRIW | 820_AB |  |  |  |  |  |  |  |  |  |
| 8200CCG505 |  | Reinstate Road & Utilities |  | 24d | 2013-08-01 A | 2013-08-31 A | 8200CCG120 | 100% | 2013-08-01 | 2013-08-30 | Cal 1 | Other Skill Labour (Civil) [2304 h]; Backhoe [24 h]; Roller [24] | AAu | CC G | WD1 CUL | REINSTA | 1 | 820 | G | 10.1 | RRIW | 820_AB |  |  |  |  |  |  |  |  |  |
| 8200CCG510 |  | DSD Inspection and Hand Over |  | 6d | 2013-10-23 A | 2013-10-29 A | 8200CCG505, 8200CCG105, 8200CCG210, 8200CCG120 | 100% |  |  | Cal 1 |  | AAu | CC G | WD1 CUL | REINSTA | 1 | 820 | G | 10.1 | RRIW | 820_AB |  |  |  |  |  |  |  |  |  |
|  | 140 | **Completion** |  |  | 2012-06-01 | 2013-11-07 |  |  |  |  |  |  |  |  |  |  |  |  |  |  |  |  |  |  |  |  |  |  |  |  |  |
| 8200CCG515 |  | Prepare & Submit Draft As-built Drawings |  | 24d | 2012-06-01 A | 2013-11-07 A | 8200CCG505 | 100% | 2012-06-01 | 2012-06-29 | Cal 3 |  | AAu | CC G | WD1 CUL | O&M AsB |  |  | G |  |  | 820_AB |  |  |  |  |  |  |  |  |  |
| 8200CCG520 |  | Prepare & Submit As-built Drawings |  | 24d | 2012-06-01 A | 2013-11-07 A | 8200CCG210, 8200CCG515 | 100% | 2012-06-01 | 2012-06-29 | Cal 3 |  | AAu | CC G | WD1 CUL | O&M AsB |  |  | G |  |  | 820_AB |  |  |  |  |  |  |  |  |  |
|  | 30 | **G5 Rising Main Diversion & FMO Pier A Pile Remvoal** |  |  | 2010-05-12 | 2015-07-31 |  |  |  |  |  |  |  |  |  |  |  |  |  |  |  |  |  |  |  |  |  |  |  |  |  |
| 8200y930 |  | Rising Main & FMO Pier A Pile Removal (DT) | level of effort | 665d | 2010-08-20 A | 2011-11-25 A | 8200CCG545 SS | 100% | 2011-03-13 | 2013-01-05 |  |  |  |  |  |  |  |  |  |  |  | 820_AB | 4 | 2012-04-01 | 2012-04-01 | S1 | 1 |  |  |  |  |
| 8200y940 |  | Rising Main & FMO Pier A Pile Removal (UT) | level of effort | 910d | 2010-08-20 A | 2011-11-25 A | 8200CCG545 SS | 100% | 2011-03-13 | 2013-09-07 |  |  |  |  |  |  |  |  |  |  |  | 820_AB | 4 |  |  | S1 | 2 | 2013-05-26 | 2013-05-26 |  |  |
|  | 20 | **Method Statement Submission and Approval** |  |  | 2010-06-29 | 2010-08-20 |  |  |  |  |  |  |  |  |  |  |  |  |  |  |  |  |  |  |  |  |  |  |  |  |  |
| 8200MTG100 |  | MS Preparation |  | 22d | 2010-06-29 A | 2010-07-24 A | 8200DSG300, 8200KD1020 | 100% | 2011-04-04 | 2011-05-04 | Cal 3 |  |  | CC G | RISINGM | MS PREP | 1 | 820 | G |  |  | 820_AB |  |  |  |  |  |  |  | ARo | C010 |
| 8200MTG110 |  | MS Submission to MTR | milestone | 0d | 2010-07-29 A | 2010-07-29 A | 8200MTG100 | 100% | 2011-04-15 | 2011-04-15 | Cal 3 |  |  | CC G | RISINGM | MS PREP | 1 | 820 | G |  |  | 820_AB |  |  |  |  |  |  |  | ARo | C010 |
| 8200MTG120 |  | MS Comment & Approval by MTR |  | 22d | 2010-07-30 A | 2010-08-20 A | 8200MTG110 | 100% | 2011-04-16 | 2011-05-07 |  |  |  | CC G | RISINGM | MS PREP | 1 | 820 | G |  |  | 820_AB |  |  |  |  |  |  |  | ARo | C010 |
| 8200MTG130 |  | Issue for Construction | milestone | 0d | 2010-08-20 A | 2010-08-20 A | 8200MTG120, 8200MTG110 FS+1d | 100% | 2011-05-13 | 2011-05-13 | Cal 3 |  |  | CC G | RISINGM | MS PREP | 1 | 820 | G |  |  | 820_AB |  |  |  |  |  |  |  | ARo | C010 |
|  | 10 | **Temp. Works Design Submission** |  |  | 2010-05-12 | 2011-01-03 |  |  |  |  |  |  |  |  |  |  |  |  |  |  |  |  |  |  |  |  |  |  |  |  |  |
| 8200DSG300 |  | Prepare Diversion Scheme to DSD |  | 35d | 2010-05-12 A | 2010-06-15 A | 8200KD1020 | 100% | 2011-02-28 | 2011-04-03 |  |  |  | CC G | RISINGM | TEMPWKD |  | 820 | G |  |  | 820_AB |  |  |  |  |  |  |  |  | C010 |
| 8200DSG315 |  | Prepare Temporary Work Design for Cofferdam |  | 50d | 2010-05-24 A | 2010-07-22 A | 8200DSG300 SS+12d | 100% | 2011-03-12 | 2011-05-16 | Cal 3 |  |  | CC G | RISINGM | TEMPWKD | 1 | 820 | G |  |  | 820_AB |  |  |  |  |  |  |  |  | C010 |
| 8200DSG305 |  | Propose Diversion Scheme to DSD | milestone | 0d | 2010-06-15 A | 2010-06-15 A | 8200DSG300 | 100% | 2011-04-04 | 2011-04-04 | Cal 3 |  |  | CC G | RISINGM | TEMPWKD | 1 | 820 | G |  |  | 820_AB |  |  |  |  |  |  |  |  | C010 |
| 8200DSG310 |  | No objection from DSD |  | 96d | 2010-06-16 A | 2010-09-19 A | 8200DSG305, 8200DSG305 FF | 100% | 2011-04-04 | 2011-07-08 |  |  |  | CC G | RISINGM | TEMPWKD | 1 | 820 | G |  |  | 820_AB |  |  |  |  |  |  |  |  | C010 |
| 8200DSG365 |  | Prepare Design for DSD Main Support/Detailed Scheme |  | 27d | 2010-06-24 A | 2010-07-26 A | 8200DSG310 FF+12d, 8200DSG300 | 100% | 2011-04-08 | 2011-05-14 | Cal 3 |  |  | CC G | RISINGM | TEMPWKD |  |  | G |  |  | 820_AB |  |  |  |  |  |  |  |  |  |
| 8200DSG375 |  | DSD Main Support Approval by MTR/DSD |  | 56d | 2010-07-15 A | 2010-09-08 A | 8200DSG365 | 100% | 2011-05-14 | 2011-07-08 |  |  |  | CC G | RISINGM | TEMPWKD |  |  | G |  |  | 820_AB |  |  |  |  |  |  |  |  |  |
| 8200DSG320 |  | Temp. Works Design Comment & Approval by MTR/DSD |  | 61d | 2010-07-23 A | 2010-09-21 A | 8200DSG315 | 100% | 2011-04-19 | 2011-06-18 |  |  |  | CC G | RISINGM | TEMPWKD | 1 | 820 | G |  |  | 820_AB |  |  |  |  |  |  |  |  | C010 |
| 8200DSG385 |  | Issue for Construction | milestone | 0d | 2010-09-08 A | 2010-09-08 A | 8200DSG375 | 100% | 2011-06-10 | 2011-06-10 | Cal 3 |  |  | CC G | RISINGM | TEMPWKD |  |  | G |  |  | 820_AB |  |  |  |  |  |  |  |  |  |
| 8200DSG395 |  | Pipe/Fitting Procurement |  | 117d | 2010-09-09 A | 2011-01-03 A | 8200DSG385 | 100% | 2011-06-11 | 2011-10-05 |  |  |  | CC G | RISINGM | TEMPWKD |  |  | G |  |  | 820_AB |  |  |  |  |  |  |  |  |  |
| 8200DSG325 |  | Issue for Construction (Cofferdam) | milestone | 0d | 2010-09-21 A | 2010-09-21 A | 8200DSG310 FS+1d, 8200DSG320 | 100% | 2011-05-16 | 2011-05-16 | Cal 3 |  |  | CC G | RISINGM | TEMPWKD | 1 | 820 | G |  |  | 820_AB |  |  |  |  |  |  |  |  | C010 |

| ID | WBS | Activity | Type | Duration | Start | Finish | Predecessors | Complete | Planned start | Planned finish | Total float | Free float | Calendar | Resources | Responsible by | LEVEL 1 | LEVEL 2 | LEVEL 3 | Cost Centre | Works Area | 820_As-built | SUMMARY | Contracts | QUANTITY | Rate | Phases of Works | Classification of Works | Priority A | TBM DT s | TBM DT f | Sum1 | TBM UT f | TBM UT s | Production Rate |
| --- | --- | --- | --- | --- | --- | --- | --- | --- | --- | --- | --- | --- | --- | --- | --- | --- | --- | --- | --- | --- | --- | --- | --- | --- | --- | --- | --- | --- | --- | --- | --- | --- | --- | --- |
|  | 30 | **Construction** |  |  | 2010-07-29 | 2015-07-31 |  |  |  |  |  |  |  |  |  |  |  |  |  |  |  |  |  |  |  |  |  |  |  |  |  |  |  |  |
| 8200CCG525 |  | GI works for Rising Main Pile Removal |  | 18d | 2010-07-29 A | 2010-08-19 A | 8200KD1020 FS+78d | 100% | 2011-02-28 | 2011-03-19 |  |  | Cal 1 | Other Skill Labour (Civil) [864 h]; Plant Operator [144 h]; Drilling Rig [18 h] | MWo | CC G | RISINGM | CONS | G | 11.27 | 820_AB |  |  |  |  |  |  |  |  |  |  |  |  |  |
| 8200CCG530 |  | Trial Trench for Existing Utilities |  | 19d | 2010-07-30 A | 2010-08-23 A | 8200DSG315, 8200AC1170 | 100% | 2011-04-19 | 2011-05-18 |  |  | Cal 1 | Other Skill Labour (Civil) [288 h]; Plant Operator [48 h]; Backhoe [6 h]; Mobile Crane [6 h] | MWo | CC G | RISINGM | CONS | G | 11.27 | 820_AB | 1 | 820 |  |  |  |  |  |  |  |  |  |  |  |
| 8200CCG545 |  | Sheetpile Installation |  | 13d | 2010-08-20 A | 2010-09-04 A | 8200DSG325, 8200CCG540 SS+3d, 8200CCG535 SS | 100% | 2011-05-21 | 2011-06-04 |  |  | Cal 1 | Other Skill Labour (Civil) [1824 h]; Plant Operator [304 h]; Mobile Crane [19 h]; Sheet piling rig [19] | MWo | CC G | RISINGM | CONS | G | 11.27 | 820_AB | 1 | 820 | 114mL | 6m/d | C050 | RRIW |  |  |  |  |  |  |  |
| 8200sum650 |  | Rising Main & FMO Pier A Pile Removal (DT) | level of effort | 665d | 2010-08-20 A | 2011-11-25 A | 8200CCG545 SS | 100% | 2011-03-13 | 2013-01-05 |  |  |  |  |  |  |  |  | G | 11.27 | 820_AB |  |  |  |  |  |  | 4 | 2011-12-28 | 2011-12-28 | S1 |  |  |  |
| 8200sum660 |  | Rising Main & FMO Pier A Pile Removal (UT) | level of effort | 910d | 2010-08-20 A | 2011-11-25 A | 8200CCG545 SS | 100% | 2011-03-13 | 2013-09-07 |  |  |  |  |  |  |  |  | G | 11.27 | 820_AB |  |  |  |  |  |  | 4 |  |  | S1 | 2013-02-13 | 2013-02-13 |  |
| 8200CCG535 |  | Slew Telecom Cable (PCCW702+CATV704) |  | 8d | 2010-09-18 A | 2010-09-28 A | 8200CCG530, 8200MTG130 | 100% | 2011-04-30 | 2011-05-12 |  |  | Cal 1 | Other Skill Labour (Civil) [480 h]; Plant Operator [96 h]; Mobile Crane [12 h] | MWo | CC G | RISINGM | CONS | G | 11.27 | 820_AB | UTILITY | 820 |  |  | C020 | UTD |  |  |  |  |  |  |  |
| 8200CCG550 |  | Northern Rising Main: Install Prebored H-pile (10nos.) |  | 31d | 2010-09-20 A | 2010-10-28 A | 8200CCG545 FS-1d, 8200CCG525, 8200DSG325 | 100% | 2011-06-14 | 2011-07-23 |  |  | Cal 1 | Mobile Crane [37 h]; Socketed H-pile Rig [31 h]; nos. of Pile Installation [10 Nos]; Other Skill Labour (Civil) [3552 h]; Plant Operator [296 h] | MWo | CC G | RISINGM | CONS | G | 11.27 | 820_AB | 1 | 820 | 10nos | 1Rig |  | RRIW |  |  |  |  |  |  | 2d/pile |
| 8200CCG555 |  | Southern Rising Main: install Prebored H-pile (10nos.) |  | 31d | 2010-09-20 A | 2010-10-28 A | 8200CCG550 SS | 100% | 2011-06-14 | 2011-07-23 |  |  | Cal 1 | Other Skill Labour (Civil) [3552 h]; Plant Operator [592 h]; Mobile Crane [37 h]; Socketed H-pile Rig [31 h]; nos. of Pile Installation [10 Nos] | MWo | CC G | RISINGM | CONS | G | 11.27 | 820_AB | 1 | 820 | 10nos. | 1Rig |  | RRIW |  |  |  |  |  |  | 2d/pile |
| 8200CCG540 |  | Ground Treatment for Existing Seawall, if any |  | 7d | 2010-09-22 A | 2010-09-29 A | 8200DSG325, 8200MTG130 | 100% | 2011-05-17 | 2011-05-25 |  |  | Cal 1 | Other Skill Labour (Civil) [288 h]; Plant Operator [96 h]; Drilling Rig [6 h] | MWo | CC G | RISINGM | CONS | G | 11.27 | 820_AB | 1 | 820 |  |  | C050 | RRIW |  |  |  |  |  |  |  |
| 8200CCG565 |  | Excavate & Expose Bottom of Rising Main (Trial Trench) |  | 17d | 2010-10-11 A | 2010-10-30 A | 8200CCG555, 8200CCG545, 8200CCG550 | 100% | 2011-08-01 | 2011-08-22 |  |  | Cal 1 | Excavation - Soft [5500 m3]; Other Skill Labour (Civil) [288 h]; Plant Operator [48 h]; Backhoe [6 h] | MWo | CC G | RISINGM | CONS | G | 11.27 | 820_AB | PILEREM | 820 | 38.4mLx13.2mWx8m;4055m3 | 300m3/d |  | RRIW |  |  |  |  |  |  |  |
| 8200CCG560 |  | Pile Testing |  | 6d | 2010-10-22 A | 2010-10-28 A | 8200CCG550, 8200CCG555 | 100% | 2011-08-01 | 2011-08-06 |  |  | Cal 1 | Other Skill Labour (Civil) [624 h]; Plant Operator [104 h]; Mobile Crane [13 h] | MWo | CC G | RISINGM | CONS | G | 11.27 | 820_AB | PILEREM | 820 |  |  |  | RRIW |  |  |  |  |  |  |  |
| 8200CCG567 |  | Locate Existing Rising Main & FMO (A) Piles |  | 10d | 2010-10-28 A | 2010-11-08 A | 8200CCG565 | 100% | 2011-08-08 | 2011-08-20 |  |  | Cal 1 | Backhoe [18 h]; Other Skill Labour (Civil) [576 h]; Plant Operator [144 h] | MWo | CC G | RISINGM | CONS | G | 11.27 | 820_AB | 1 | 820 |  |  | C060 | RRIW |  |  |  |  |  |  |  |
| 8200CCG570 |  | Removal FMO Pier A Vertical Piles D/T & Backfilling |  | 8d | 2010-11-04 A | 2010-11-12 A | 8200sum650 FF, 8200CCG567, 8200y930 FF | 100% | 2011-08-16 | 2011-08-25 |  |  | Cal 1 | Pile Removal [2 Nos]; Other Skill Labour (Civil) [672 h]; Plant Operator [112 h]; Mobile Crane [7 h]; Pile Removal rig [7]; Backhoe [7 h] | MWo | CC G | RISINGM | CONS | G | 11.27 | 820_AB |  |  | 2nos. |  |  |  |  |  |  |  |  |  | 3.5d/pile |
| 8200CCG572 |  | Removal Pier A Vertical Piles U/T & Backfilling |  | 6d | 2010-11-13 A | 2010-11-19 A | 8200CCG570, 8200y940 FF, 8200sum660 FF | 100% | 2011-08-25 | 2011-08-31 |  |  | Cal 1 | Pile Removal [4 Nos]; Other Skill Labour (Civil) [1152 h]; Plant Operator [192 h]; Mobile Crane [12 h]; Backhoe [12 h] | MWo | CC G | RISINGM | CONS | G | 11.27 | 820_AB |  |  | 4nos. |  |  |  |  |  |  |  |  |  | 3.5d/pile |
| 8200CCG574 |  | Excavate to Capping Beam Formation Level |  | 17d | 2010-11-20 A | 2010-12-09 A | 8200CCG572 | 100% | 2011-09-12 | 2011-10-04 |  |  | Cal 1 | Other Skill Labour (Civil) [1728 h]; Plant Operator [288 h]; Backhoe [36 h]; Steel Fixer [864 h]; Concretor [864 h] | MWo | CC G | RISINGM | CONS | G | 11.27 | 820_AB |  |  |  |  |  |  |  |  |  |  |  |  |  |
| 8200CCG578 |  | North Temp.Rising Main:Capping Beam |  | 20d | 2010-12-10 A | 2011-01-06 A | 8200CCG565, 8200CCG560, 8200CCG574 | 100% | 2011-10-07 | 2011-10-29 |  |  | Cal 1 | Backhoe [20 h]; Steel Fixer [960 h]; Other Skill Labour (Civil) [960 h]; Plant Operator [160 h]; Carpenter [960 h] | MWo | CC G | RISINGM | CONS | G | 11.27 | 820_AB | 1 | 820 | 3 pile caps |  | C060 | RRIW |  |  |  |  |  |  |  |
| 8200CCG580 |  | South Temp.Rising Main:Capping Beam |  | 20d | 2010-12-10 A | 2011-01-06 A | 8200CCG560, 8200CCG578 SS, 8200CCG574 | 100% | 2011-10-07 | 2011-10-29 |  |  | Cal 1 | Other Skill Labour (Civil) [960 h]; Plant Operator [160 h]; Carpenter [960 h]; Backhoe [20 h]; Steel Fixer [960 h] | MWo | CC G | RISINGM | CONS | G | 11.27 | 820_AB | 1 | 820 | 3 pile caps |  | C060 | RRIW |  |  |  |  |  |  |  |
| 8200CCG600 |  | South Temp.Rising Main Installation+Thrust Block |  | 12d | 2011-01-07 A | 2011-01-20 A | 8200DSG395, 8200CCG578 | 100% | 2011-10-31 | 2011-11-12 |  |  | Cal 1 | Other Skill Labour (Civil) [1152 h]; Plant Operator [96 h]; Mobile Crane [12 h]; Steel Fixer [576 h]; Concretor [576 h] | MWo | CC G | RISINGM | CONS | G | 11.27 | 820_AB | 1 | 820 |  |  |  | RRIW |  |  |  |  |  |  |  |
| 8200CCG605 |  | Notification for South Rising Main & Flow Stop from DSD Station | milestone | 0d | 2011-01-10 A | 2011-01-10 A | 8200CCG600 FF | 100% | 2011-11-12 | 2011-11-12 |  |  | Cal 6 |  | MWo | CC G | RISINGM | CONS | G | 11.27 | 820_AB | UTILITY | 820 |  |  |  | RRIW |  |  |  |  |  |  |  |
| 8200CCG603 |  | Expose Existing South Pipe |  | 9d | 2011-01-11 A | 2011-01-20 A | 8200CCG600 FF | 100% | 2011-03-24 | 2011-11-02 |  |  | Cal 6 | Other Skill Labour (Civil) [864 h]; Plant Operator [144 h]; Backhoe [18 h] | MWo | CC G | RISINGM | CONS | G | 11.27 | 820_AB |  |  |  |  |  |  |  |  |  |  |  |  |  |
| 8200CCG612 |  | North Temp.Rising Main Installation+Thrust Block |  | 27d | 2011-01-12 A | 2011-02-16 A | 8200CCG580, 8200CCG600 FS-2d | 100% | 2011-02-28 | 2011-03-30 |  |  | Cal 1 | Other Skill Labour (Civil) [1152 h]; Plant Operator [96 h]; Mobile Crane [12 h] | MWo | CC G | RISINGM | CONS | G | 11.27 | 820_AB |  |  |  |  |  |  |  |  |  |  |  |  |  |
| 8200CCG608 |  | Diversion Works for Rising Main (South Pipe) |  | 11d | 2011-01-21 A | 2011-02-02 A | 8200CCG605, 8200CCG603, 8200CCG600 | 100% | 2011-02-28 | 2011-03-11 |  |  | Cal 6 | Other Skill Labour (Civil) [960 h]; Plant Operator [80 h]; Mobile Crane [10 h] | MWo | CC G | RISINGM | CONS | G | 11.27 | 820_AB | UTILITY | 820 |  |  |  | RRIW |  |  |  |  |  |  |  |
| 8200CCG615 |  | Notification for North Rising Main & Flow Stop from DSD Station | milestone | 0d | 2011-02-17 A | 2011-02-17 A | 8200CCG613 | 100% | 2011-12-15 | 2011-12-15 |  |  | Cal 6 |  | MWo | CC G | RISINGM | CONS | G | 11.27 | 820_AB | UTILITY | 820 |  |  |  | RRIW |  |  |  |  |  |  |  |
| 8200CCG613 |  | Expose Existing North Pipe |  | 47d | 2011-02-18 A | 2011-03-11 A | 8200CCG608, 8200CCG612, 8200CCG603 | 100% | 2011-03-14 | 2011-12-06 |  |  | Cal 6 | Other Skill Labour (Civil) [864 h]; Plant Operator [144 h]; Mobile Crane [18 h] | MWo | CC G | RISINGM | CONS | G | 11.27 | 820_AB |  |  |  |  |  |  |  |  |  |  |  |  |  |
| 8200CCG620 |  | Diversion Works for Rising Main (North Pipe) |  | 10d | 2011-03-12 A | 2011-03-23 A | 8200CCG608, 8200CCG615, 8200CCG612, 8200CCG613 | 100% | 2011-11-01 | 2011-11-11 |  |  | Cal 6 | Other Skill Labour (Civil) [960 h]; Plant Operator [80 h]; Mobile Crane [10 h] | MWo | CC G | RISINGM | CONS | G | 11.27 | 820_AB | 1 | 820 |  |  |  | RRIW |  |  |  |  |  |  |  |
| 8200CCG625 |  | Dismantle Existing Rising Mains |  | 6d | 2011-03-24 A | 2011-03-30 A | 8200CCG620 | 100% | 2011-11-12 | 2011-11-18 |  |  | Cal 1 | Plant Operator [48 h]; Mobile Crane [6 h]; Other Skill Labour (Civil) [576 h] | MWo | CC G | RISINGM | CONS | G | 11.27 | 820_AB | PILEREM | 820 | 6mWx27mLx3mD |  |  | RRIW |  |  |  |  |  |  |  |
| 8200CCG628 |  | Form WorkingPlatform |  | 24d | 2011-03-28 A | 2011-05-14 A | 8200CCG625 | 100% | 2011-06-21 | 2011-07-21 |  |  | Cal 1 | Other Skill Labour (Civil) [2304 h]; Plant Operator [192 h]; Mobile Crane [24 h] | MWo | CC G | RISINGM | CONS | G | 11.27 | 820_AB |  |  |  |  |  |  |  |  |  |  |  |  |  |
| 8200CCG635 |  | Removal FMO Pier A Raking Piles DT & Backfilling |  | 60d | 2011-04-18 A | 2011-07-30 A | 8200y930 FF, 8200CCG630, 8200CCG625, 8200sum650 FF | 100% | 2011-08-31 | 2011-11-14 |  |  | Cal 1 | Pile Removal [2 Nos]; Other Skill Labour (Civil) [8640 h]; Plant Operator [1440 h]; Pile Removal rig [60]; Mobile Crane [60 h]; Backhoe [60 h] | MWo | CC G | RISINGM | CONS | G | 11.27 | 820_AB | PILEREM | 820 | 2nos. |  |  | RRIW |  |  |  |  |  |  | 30d/pile |
| 8200CCG645 |  | Removal FMO Pier A Raking Piles UT & Backfilling |  | 150d | 2011-04-18 A | 2011-08-01 A | 8200CCG635, 8200y940 FF, 8200sum660 FF, 8200CCG640 | 100% | 2011-10-29 | 2012-05-08 |  |  | Cal 1 | Pile Removal [5 Nos]; Other Skill Labour (Civil) [21600 h]; Plant Operator [3600 h]; Pile Removal rig [150]; Mobile Crane [150 h]; Backhoe [150 h] | MWo | CC G | RISINGM | CONS | G | 11.27 | 820_AB | PILEREM | 820 | 5nos. |  |  | RRIW |  |  |  |  |  |  | 30d/pile |
| 8200CCG630 |  | Locate Existing Rising Main & FMO (A) Piles |  | 24d | 2011-05-16 A | 2011-06-21 A | 8200CCG625, 8200CCG550, 8200CCG628, 8200CCG620, 8200CCG565 | 100% | 2011-06-21 | 2011-07-21 |  |  | Cal 1 | Other Skill Labour (Civil) [2304 h]; Plant Operator [576 h]; Backhoe [72 h] | MWo | CC G | RISINGM | CONS | G | 11.27 | 820_AB | PILEREM | 820 |  |  |  | RRIW |  |  |  |  |  |  |  |
| 8200CCG640 |  | Remove Rising Mains Vertical Piles Clash D/T Tunnel & Backfilling |  | 93d | 2011-08-01 A | 2011-11-25 A | 8200sum650 FF, 8200CCG630 SS+3d, 8200CCG635, 8200y930 FF | 100% | 2011-08-31 | 2011-12-22 |  |  | Cal 1 | Pile Removal [12 Nos]; Other Skill Labour (Civil) [6048 h]; Plant Operator [1008 h]; Pile Removal rig [42]; Mobile Crane [42 h]; Backhoe [42 h] | MWo | CC G | RISINGM | CONS | G | 11.27 | 820_AB | PILEREM | 820 | 12 vertical piles | 3d/pile x2 |  | RRIW |  |  |  |  |  |  | 3.5d/pile |
| 8200CCG650 |  | Remove Rising Main Vertical Piles Clash U/T Tunnel & Backfilling |  | 92d | 2011-08-02 A | 2011-11-25 A | 8200CCG640 FS+3d, 8200CCG645, 8200sum660 FF, 8200y940 FF | 100% | 2011-11-30 | 2012-03-22 |  |  | Cal 1 | Pile Removal [12 Nos]; Other Skill Labour (Civil) [13248 h]; Plant Operator [1008 h]; Pile Removal rig [92]; Mobile Crane [92 h]; Backhoe [92 h] | MWo | CC G | RISINGM | CONS | G | 11.27 | 820_AB | 1 | 820 | 12 vertical piles | 3d/pile x2 |  | RRIW |  |  |  |  |  |  | 3.5d/pile |
| 8200CCG655 |  | Remove Working Platform |  | 12d | 2011-11-26 A | 2011-12-09 A | 8200CCG650 | 100% | 2012-04-17 | 2012-05-03 |  |  | Cal 1 | Other Skill Labour (Civil) [1152 h]; Plant Operator [96 h]; Mobile Crane [12 h] | MWo | CC G | RISINGM | CONS | G | 11.27 | 820_AB | UTILITY | 820 |  |  |  | RRIW |  |  |  |  |  |  |  |
| 8200CCG660 |  | Tie Beams Construction for New Rising Main |  | 34d | 2011-12-10 A | 2012-01-21 A | 8200CCG655 | 100% | 2012-01-16 | 2012-02-27 |  |  | Cal 1 | Other Skill Labour (Civil) [2880 h]; Plant Operator [240 h]; Backhoe [30 h]; Carpenter [1440 h]; Mobile Crane [30 h] | MWo | CC G | RISINGM | CONS | G | 11.27 | 820_AB | UTILITY | 820 | 11x7mx1mx0.7m |  |  | RRIW |  |  |  |  |  |  |  |
| 8200CCG668 |  | Notification for South Rising Main & Flow Stop from DSD Station | milestone | 0d | 2013-10-07 A | 2013-10-07 A | 8200CCG660 FS+170d | 100% |  |  |  |  |  |  | MWo | CC G | RISINGM | CONS | G | 11.27 | 820_AB | UTILITY | 820 |  |  |  | RRIW |  |  |  |  |  |  |  |
| 8200CCG675 |  | Reinstatement Works for Rising Mains (South pipe) |  | 50d | 2013-10-30 A | 2013-12-18 A | 8200CCG668 FS+48d | 100% | 2013-11-01 | 2013-12-31 |  |  | Cal 6 | Other Skill Labour (Civil) [480 h]; Plant Operator [80 h]; Backhoe [10 h] | MWo | CC G | RISINGM | CONS | G | 11.27 | 820_AB | 1 | 820 |  |  |  | RRIW |  |  |  |  |  |  |  |
| 8200CCG795 |  | Notification for North Rising Main & Flow Stop from DSD Station | milestone | 0d | 2013-12-23 A | 2013-12-23 A | 8200CCG675 | 100% |  |  |  |  |  |  | MWo | CC G | RISINGM | CONS | G | 11.27 | 820_AB | UTILITY | 820 |  |  |  | RRIW |  |  |  |  |  |  |  |
| 8200CCG803 |  | Reinstatement Works for Rising Mains (North pipe) |  | 24d | 2013-12-24 A | 2014-01-24 A | 8200CCG675, 8200CCG795 | 100% | 2013-12-24 | 2014-01-23 |  |  | Cal 6 | Other Skill Labour (Civil) [768 h]; Plant Operator [192 h]; Backhoe [192 h] | MWo | CC G | RISINGM | CONS | G | 11.27 | 820_AB | 1 | 820 |  |  |  | RRIW |  |  |  |  |  |  |  |
| 8200CCG807 |  | Place Concrete Surround |  | 18d | 2014-01-27 A | 2014-03-28 A | 8200CCG675, 8200CCG803 | 100% | 2015-01-27 | 2015-02-23 |  |  | Cal 6 | Other Skill Labour (Civil) [480 h] | MWo | CC G | RISINGM | CONS | G | 11.27 | 820_AB |  |  |  |  |  |  |  |  |  |  |  |  |  |
| 8200CCG1010 |  | Cofferdam Reinstatement |  | 60d | 2014-03-29 A | 2014-05-10 A | 8200CCG815 | 100% | 2014-03-29 | 2014-06-19 |  |  | Cal 1 | Other Skill Labour (Civil) [960 h]; Plant Operator [480 h]; Backhoe [480 h] | MWo | CC G | RISINGM | CONS | G | 11.27 | 820_AB |  |  | 6.8mD |  |  |  |  |  |  |  |  |  |  |
| 8200CCG815 |  | Utilities Reinstatement |  | 48d | 2015-06-01 | 2015-07-31 | 8200CCG807 |  |  |  | 243d | 227d | Cal 1 | Other Skill Labour (Civil) [1536 h] | MWo | CC G | RISINGM | CONS | G | 11.27 | 820_AB |  |  | 6.8mD |  |  |  |  |  |  |  |  |  |  |

| ID | WBS | Activity | Type | Duration | Start | Finish | Predecessors | Complete | Planned start | Planned finish | Calendar | Responsible by | LEVEL 1 | LEVEL 2 | LEVEL 3 | Cost Centre | Works Area | 820_As-built | Priority A | Sum1 | Order | TBM DT s | TBM DT f | TBM UT f | TBM UT s | Contracts | Phases of Works | SUMMARY | Responsible (bm makes Global) |
| --- | --- | --- | --- | --- | --- | --- | --- | --- | --- | --- | --- | --- | --- | --- | --- | --- | --- | --- | --- | --- | --- | --- | --- | --- | --- | --- | --- | --- | --- |
|  | 50 | **Completion** |  |  | 2011-09-01 | 2015-04-30 |  |  |  |  |  |  |  |  |  |  |  |  |  |  |  |  |  |  |  |  |  |  |  |
| 8200CCG829 |  | Prepare & Submit Draft As-built Drawings |  | 24d | 2011-09-01 A | 2015-03-13 A | 8200CCG1010 | 100% | 2011-09-01 | 2011-09-29 | Cal 3 | MWo | CC G | RISINGM | O&M AsB | G | 11.27 | 820_AB |  |  |  |  |  |  |  |  |  |  |  |
| 8200CCG830 |  | Prepare & Submit As-built Drawings |  | 24d | 2011-09-01 A | 2015-04-30 A | 8200CCG829 | 100% | 2011-09-01 | 2011-09-29 | Cal 3 | MWo | CC G | RISINGM | O&M AsB | G | 11.27 | 820_AB |  |  |  |  |  |  |  |  |  |  |  |
|  | 40 | **G2 YC2 Culvet - Remove Barrette & Modify Foundation** |  |  | 2010-05-12 | 2015-06-03 |  |  |  |  |  |  |  |  |  |  |  |  |  |  |  |  |  |  |  |  |  |  |  |
| 8200y950 |  | Stage 1: YC2 Cofferdam Installation | level of effort | 158d | 2010-11-22 A | 2011-04-28 A | 8200CCG695 SS | 100% | 2011-03-13 | 2011-08-17 |  |  |  |  |  | G | 11.27 | 820_AB | 4 | S1 | 1 |  |  |  |  |  |  |  |  |
| 8200y960 |  | Stage 2: YC2 Barrettes Removal (B15 - DT) | level of effort | 259d | 2011-04-16 A | 2012-01-03 A | 8200CCG780 SS | 100% | 2011-06-19 | 2012-03-03 |  |  |  |  |  | G | 11.27 | 820_AB | 4 | S1 | 2 | 2012-07-09 | 2012-07-09 |  |  |  |  |  |  |
| 8200y970 |  | Stage 3: YC2 Barrettes Removal (B13 - UT) | level of effort | 15d | 2012-10-24 A | 2012-12-20 A | 8200CCG710 SS | 100% | 2012-11-07 | 2012-11-21 |  |  |  |  |  | G | 11.27 | 820_AB | 4 | S1 | 3 |  |  | 2013-08-11 | 2013-08-11 |  |  |  |  |
|  | 10 | **Temp.Works Design Submission** |  |  | 2010-05-12 | 2010-10-05 |  |  |  |  |  |  |  |  |  |  |  |  |  |  |  |  |  |  |  |  |  |  |  |
| 8200DSG335 |  | Temp. Works Design Preparation |  | 57d | 2010-05-12 A | 2010-07-07 A | 8200KD1020 | 100% | 2011-02-28 | 2011-04-25 |  |  | CC G | YC2 CUL | TEMPWKD | G |  | 820_AB |  |  |  |  |  |  |  | 820 | C010 |  |  |
| 8200DSG340 |  | Temp. Works Design Submit to MTR | milestone | 0d | 2010-07-07 A | 2010-07-07 A | 8200DSG335 | 100% | 2011-03-23 | 2011-03-23 | Cal 3 |  | CC G | YC2 CUL | TEMPWKD | G |  | 820_AB |  |  |  |  |  |  |  | 820 | C010 | 1 |  |
| 8200DSG345 |  | Temp. Works Design Comment by MTR/DSD |  | 15d | 2010-07-08 A | 2010-07-22 A | 8200DSG340, 8200DSG340 FF | 100% | 2011-03-24 | 2011-04-07 |  |  | CC G | YC2 CUL | TEMPWKD | G |  | 820_AB |  |  |  |  |  |  |  | 820 | C010 | 1 |  |
| 8200DSG350 |  | Temp. Works Design Re-submission Preparation |  | 49d | 2010-07-23 A | 2010-09-17 A | 8200DSG345 | 100% | 2011-04-21 | 2011-06-23 | Cal 3 |  | CC G | YC2 CUL | TEMPWKD | G |  | 820_AB |  |  |  |  |  |  |  | 820 | C010 | 1 |  |
| 8200DSG355 |  | Temp. Works Design Comment & Approval by MTR/DSD |  | 13d | 2010-09-23 A | 2010-10-05 A | 8200DSG350 FF, 8200DSG350 | 100% | 2011-05-10 | 2011-05-22 |  |  | CC G | YC2 CUL | TEMPWKD | G |  | 820_AB |  |  |  |  |  |  |  | 820 | C010 | 1 |  |
| 8200DSG360 |  | Issue for Construction | milestone | 0d | 2010-10-05 A | 2010-10-05 A | 8200DSG355, 8200DSG345 FS+1d | 100% | 2011-06-07 | 2011-06-07 | Cal 3 |  | CC G | YC2 CUL | TEMPWKD | G |  | 820_AB |  |  |  |  |  |  |  | 820 | C010 | 1 |  |
|  | 20 | **Method Statement Submission and Approval** |  |  | 2010-07-15 | 2010-09-21 |  |  |  |  |  |  |  |  |  |  |  |  |  |  |  |  |  |  |  |  |  |  |  |
| 8200MTG140 |  | MS Preparation |  | 31d | 2010-07-15 A | 2010-08-19 A | 8200KD1020 | 100% | 2011-02-28 | 2011-04-04 | Cal 3 |  | CC G | YC2 CUL | MS PREP | G |  | 820_AB |  |  |  |  |  |  |  | 820 | C010 | 1 | ARo |
| 8200MTG170 |  | MS Re-submission Preparation |  | 30d | 2010-07-15 A | 2010-08-19 A | 8200MTG160 | 100% | 2011-04-26 | 2011-06-01 | Cal 3 |  | CC G | YC2 CUL | MS PREP | G |  | 820_AB |  |  |  |  |  |  |  | 820 | C010 | 1 | ARo |
| 8200MTG160 |  | MS Comment by MTR/DSD |  | 34d | 2010-08-19 A | 2010-09-21 A | 8200MTG150 | 100% | 2011-03-29 | 2011-05-01 |  |  | CC G | YC2 CUL | MS PREP | G |  | 820_AB |  |  |  |  |  |  |  | 820 | C010 | 1 | ARo |
| 8200MTG190 |  | MS Comment & Approval by MTR/DSD |  | 34d | 2010-08-19 A | 2010-09-21 A | 8200MTG180 | 100% | 2011-05-19 | 2011-06-21 |  |  | CC G | YC2 CUL | MS PREP | G |  | 820_AB |  |  |  |  |  |  |  | 820 | C010 | 1 | ARo |
| 8200MTG150 |  | MS Submission to MTR | milestone | 0d | 2010-08-19 A | 2010-08-19 A | 8200MTG140 | 100% | 2011-03-28 | 2011-03-28 | Cal 3 |  | CC G | YC2 CUL | MS PREP | G |  | 820_AB |  |  |  |  |  |  |  | 820 | C010 | 1 | ARo |
| 8200MTG180 |  | MS Submission to MTR | milestone | 0d | 2010-08-19 A | 2010-08-19 A | 8200MTG170, 8200MTG170 FF | 100% | 2011-05-18 | 2011-05-18 | Cal 3 |  | CC G | YC2 CUL | MS PREP | G |  | 820_AB |  |  |  |  |  |  |  | 820 | C010 | 1 | ARo |
| 8200MTG200 |  | Issue for Construction | milestone | 0d | 2010-09-21 A | 2010-09-21 A | 8200MTG190, 8200MTG160 FS+1d | 100% | 2011-06-15 | 2011-06-15 | Cal 3 |  | CC G | YC2 CUL | MS PREP | G |  | 820_AB |  |  |  |  |  |  |  | 820 | C010 | 1 | ARo |
|  | 30 | **TTM Scheme Submission & Approval** |  |  | 2010-05-12 | 2010-10-19 |  |  |  |  |  |  |  |  |  |  |  |  |  |  |  |  |  |  |  |  |  |  |  |
| 8200TMG180 |  | Prepare Temporary Traffic Management |  | 21d | 2010-05-12 A | 2010-06-07 A | 8200KD1020 | 100% | 2011-02-28 | 2011-03-23 | Cal 1 |  | CC G | YC2 CUL | TTMS/AP | G |  | 820_AB |  |  |  |  |  |  |  | 820 | C040 | TTMS AP |  |
| 8200TMG195 |  | TTM reviewed by SLG |  | 30d | 2010-06-03 A | 2010-07-02 A | 8200TMG190 | 100% | 2011-06-26 | 2011-07-25 |  |  | CC G | YC2 CUL | TTMS/AP | G |  | 820_AB |  |  |  |  |  |  |  | 820 | C040 | TTMS AP |  |
| 8200TMG185 |  | TTM reviewed by SLG |  | 74d | 2010-06-09 A | 2010-08-21 A | 8200TMG180 FS+1d | 100% | 2011-03-25 | 2011-06-06 |  |  | CC G | YC2 CUL | TTMS/AP | G |  | 820_AB |  |  |  |  |  |  |  | 820 | C040 | TTMS AP |  |
| 8200TMG205 |  | XP Application & Approval |  | 20d | 2010-07-15 A | 2010-08-03 A | 8200TMG185 SS+30d, 8200TMG195 FF+6d | 100% | 2011-05-01 | 2011-05-20 |  |  | CC G | YC2 CUL | TTMS/AP | G |  | 820_AB |  |  |  |  |  |  |  | 820 | C040 |  |  |
| 8200TMG200 |  | Notification to RMO |  | 29d | 2010-07-16 A | 2010-08-13 A | 8200TMG195 | 100% | 2011-07-24 | 2011-08-21 |  |  | CC G | YC2 CUL | TTMS/AP | G |  | 820_AB |  |  |  |  |  |  |  | 820 | C040 | TTMS AP |  |
| 8200TMG190 |  | Resubmit TTM |  | 28d | 2010-08-21 A | 2010-09-25 A | 8200TMG185 | 100% | 2011-06-18 | 2011-07-25 | Cal 1 |  | CC G | YC2 CUL | TTMS/AP | G |  | 820_AB |  |  |  |  |  |  |  | 820 | C040 | TTMS AP |  |
| 8200TMG210 |  | Implement TTM | milestone | 0d | 2010-10-19 A | 2010-10-19 A | 8200TMG205, 8200TMG200 FS+1d | 100% | 2011-08-05 | 2011-08-05 |  |  | CC G | YC2 CUL | TTMS/AP | G |  | 820_AB |  |  |  |  |  |  |  | 820 | C040 | TTMS AP |  |

| ID | WBS | Activity | Type | Duration | Start | Finish | Predecessors | Complete | Planned start | Planned finish | Constraint | Calendar | Resources | Responsible by | LEVEL 1 | LEVEL 2 | LEVEL 3 | SUMMARY | Contracts | Cost Centre | Works Area | Phases of Works | 820_As-built | Classification of Works | Priority A | Sum1 | Responsible (bm makes Global) | QUANTITY | Rate | TBM DT s | TBM DT f |
| --- | --- | --- | --- | --- | --- | --- | --- | --- | --- | --- | --- | --- | --- | --- | --- | --- | --- | --- | --- | --- | --- | --- | --- | --- | --- | --- | --- | --- | --- | --- | --- |
|  | 40 | **Stage 1** |  |  | 2010-09-12 | 2011-05-06 |  |  |  |  |  |  |  |  |  |  |  |  |  |  |  |  |  |  |  |  |  |  |  |  |  |
| 8200CCG690 |  | Shum Mong Rd: Tree Transplant by 801 Designated | milestone | 0d | 2010-09-12 A | 2010-09-12 A |  | 100% | 2011-02-28 | 2011-02-28 | finish on or after 2010-09-12 |  |  | EtW | CC G | YC2 CUL | STAGE1 | 1 | 820 | G | 11.21 | C050 | 820_AB |  |  |  |  |  |  |  |  |
| 8200CCG685 |  | Area 40.4: Tree Transplant by 801 Designated Contractor | milestone | 0d | 2010-11-07 A | 2010-11-07 A |  | 100% | 2011-02-28 | 2011-02-28 | finish on or after 2010-11-07 |  |  | EtW | CC G | YC2 CUL | STAGE1 | 1 | 820 | G | 11.21 | C050 | 820_AB |  |  |  |  |  |  |  |  |
| 8200CCG695 |  | TTA Stage 0 and 1 for YC2 and Shum Shui Po Pier |  | 25d | 2010-11-22 A | 2010-12-20 A | 8200CCG690, 8200CCG685, 8200TMG210, 8200CCG690 FF | 100% | 2011-08-06 | 2011-09-06 |  | Cal 1 | Other Skill Labour (Civil) [4608 h]; Backhoe [24 h]; Plant Operator [192 h] | EtW | CC G | YC2 CUL | STAGE1 | 1 | 820 | G | 11.21 | C050 | 820_AB | RRIW |  |  |  |  |  |  |  |
| 8200sum670 |  | Stage 1: YC2 Cofferdam Installation | level of effort | 158d | 2010-11-22 A | 2011-04-28 A | 8200CCG695 SS | 100% | 2011-03-13 | 2011-08-17 |  |  |  |  |  |  |  |  |  | G | 11.21 | C050 | 820_AB |  | 4 | S1 |  |  |  |  |  |
| 8200CCG680 |  | GI works for YC2 Barrette Removal |  | 7d | 2010-12-28 A | 2011-01-06 A | 8200KD1020 FS+172d | 100% | 2011-02-28 | 2011-03-07 |  | Cal 1 | Drilling Rig [27 h]; Plant Operator [216 h]; Other Skill Labour (Civil) [1296 h] | EtW | CC G | YC2 CUL | STAGE1 |  |  | G |  | C050 | 820_AB |  |  |  | DCl |  |  |  |  |
| 8200CCG700 |  | Cofferdam: Sheetpile Installation |  | 12d | 2011-01-03 A | 2011-01-15 A | 8200CCG695, 8200CCG680, 8200MTG200, 8200DSG360 | 100% | 2011-09-06 | 2011-09-22 |  | Cal 1 | Other Skill Labour (Civil) [1368 h]; Mobile Crane [19 h]; Plant Operator [304 h]; Sheet piling rig [19] | EtW | CC G | YC2 CUL | STAGE1 | 1 | 820 | G | 11.21 | C050 | 820_AB | RRIW |  |  |  | 20mLx12mD | 10mL/d |  |  |
| 8200CCG705 |  | Cofferdam: Excavation + Shoring |  | 20d | 2011-01-17 A | 2011-02-12 A | 8200CCG700 | 100% | 2011-10-03 | 2011-10-26 |  | Cal 1 | Excavation - Soft [600 m3]; Other Skill Labour (Civil) [1728 h]; Mobile Crane [18 h]; Plant Operator [288 h]; Backhoe [18 h] | EtW | CC G | YC2 CUL | STAGE1 | 1 | 820 | G | 11.21 | C050 | 820_AB | RRIW |  |  |  |  |  |  |  |
| 8200CCG708 |  | Backfilling for Cofferdam |  | 28d | 2011-03-07 A | 2011-04-09 A | 8200CCG705 FS+18d | 100% | 2011-06-21 | 2011-07-26 |  | Cal 1 | Other Skill Labour (Civil) [768 h]; Plant Operator [128 h]; Backhoe [16 h] | EtW | CC G | YC2 CUL | STAGE1 |  |  | G | 11.21 | C050 | 820_AB |  |  |  |  |  |  |  |  |
| 8200CCG709 |  | Construct Temp. Pavement |  | 18d | 2011-04-11 A | 2011-05-06 A | 8200y950 FF, 8200sum670 FF, 8200CCG708 | 100% | 2011-06-21 | 2011-07-13 |  | Cal 1 | Other Skill Labour (Civil) [864 h] | EtW | CC G | YC2 CUL | STAGE1 |  |  | G | 11.21 | C050 | 820_AB |  |  |  |  |  |  |  |  |
|  | 50 | **Stage 2** |  |  | 2011-04-16 | 2012-08-31 |  |  |  |  |  |  |  |  |  |  |  |  |  |  |  |  |  |  |  |  |  |  |  |  |  |
| 8200CCG780 |  | TTA Stage 2 for Culvert YC2 and Shum Shui Po Pie |  | 18d | 2011-04-16 A | 2011-05-03 A | 8200CCG709 | 100% | 2011-06-19 | 2011-07-06 |  |  | Other Skill Labour (Civil) [3456 h]; Backhoe [36 h]; Plant Operator [288 h] | EtW | CC G | YC2 CUL | STAGE2 | 1 | 820 | G | 11.21 | C040 | 820_AB | RRIW |  |  |  |  |  |  |  |
| 8200sum680 |  | Stage 2: YC2 Barrettes Removal (B15 - DT) | level of effort | 259d | 2011-04-16 A | 2012-01-03 A | 8200CCG780 SS | 100% | 2011-06-19 | 2012-03-03 |  |  |  |  |  |  |  |  |  | G | 11.21 | C050 | 820_AB |  | 4 | S1 |  |  |  | 2012-03-28 | 2012-03-28 |
| 8200CCG778 |  | GI works for YC2 Barrette Removal (Stage 2) |  | 12d | 2011-04-18 A | 2011-05-06 A | 8200CCG780 FS-16d | 100% | 2011-06-21 | 2011-07-05 |  | Cal 1 | Other Skill Labour (Civil) [576 h]; Plant Operator [96 h]; Drilling Rig [12 h] | EtW | CC G | YC2 CUL | STAGE2 |  |  | G |  |  | 820_AB |  |  |  |  |  |  |  |  |
| 8200CCG782a |  | Cofferdam: Sheetpile Installation |  | 42d | 2011-07-11 A | 2011-07-30 A | 8200CCG780 FS+60d, 8200CCG778 | 100% | 2011-08-31 | 2011-10-24 |  | Cal 1 | Other Skill Labour (Civil) [864 h]; Mobile Crane [18 h]; Plant Operator [288 h]; Sheet piling rig [18] | EtW | CC G | YC2 CUL | STAGE2 | 1 | 820 | G | 11.21 | C050 | 820_AB | RRIW |  |  |  | 20mLx12mD | 10mL/d |  |  |
| 8200CCG783 |  | Compensation Grout for Culvert |  | 40d | 2011-08-01 A | 2011-08-20 A | 8200CCG782a | 100% | 2011-08-31 | 2011-10-21 |  | Cal 1 | Drilling Rig [24 h]; Other Skill Labour (Civil) [1152 h] | EtW | CC G | YC2 CUL | STAGE2 |  |  | G | 11.21 | C050 | 820_AB |  |  |  |  |  |  |  |  |
| 8200CCG786 |  | Cofferdam: Excavation + Shoring |  | 12d | 2011-08-31 A | 2011-09-15 A | 8200CCG782a FS-7d, 8200CCG783 | 100% | 2012-01-16 | 2012-02-01 |  | Cal 1 | Excavation - Hard [400 m3]; Excavation - Soft [250 m3]; Other Skill Labour (Civil) [2592 h]; Mobile Crane [18 h]; Plant Operator [432 h]; Backhoe [36 h] | EtW | CC G | YC2 CUL | STAGE2 | 1 | 820 | G | 11.21 | C050 | 820_AB | RRIW |  |  |  |  |  |  |  |
| 8200CCG788 |  | Remove Culvert Top Slab (saw cut) |  | 6d | 2011-09-16 A | 2011-09-23 A | 8200CCG786 | 100% | 2012-02-02 | 2012-02-08 |  | Cal 1 | Other Skill Labour (Civil) [768 h]; Plant Operator [256 h]; Drilling Jumbo [16 h]; Mobile Crane [16 h] | EtW | CC G | YC2 CUL | STAGE2 | 1 | 820 | G | 11.21 | C050 | 820_AB | RRIW |  |  |  |  |  |  |  |
| 8200CCG790 |  | Install Working Platform & Mini Cofferdam for 1st Cut |  | 3d | 2011-11-01 A | 2011-11-04 A | 8200CCG788 | 100% | 2012-02-02 | 2012-02-04 |  | Cal 6 | Other Skill Labour (Civil) [768 h]; Mobile Crane [8 h]; Plant Operator [64 h] | EtW | CC G | YC2 CUL | STAGE2 | 1 | 820 | G | 11.21 | C050 | 820_AB | RRIW |  |  |  |  |  |  |  |
| 8200CCG791 |  | Barrette Removal (B15) 1st Cut |  | 22d | 2011-11-04 A | 2011-11-30 A | 8200CCG790, 8200CCG788 | 100% | 2012-02-11 | 2012-03-07 |  | Cal 6 | Pile Removal [0.5 Nos]; Other Skill Labour (Civil) [720 h]; Mobile Crane [15 h]; Plant Operator [240 h]; Pile Removal rig [15] | EtW | CC G | YC2 CUL | STAGE2 | PILEREM | 820 | G | 11.21 | C050 | 820_AB | RRIW |  |  |  | 1no. |  |  |  |
| 8200CCG792 |  | Temp. Base Slab Reinstatement (1st Cut) |  | 1d | 2011-12-02 A | 2011-12-03 A | 8200CCG791 | 100% | 2012-03-10 | 2012-03-10 |  | Cal 6 | Pile Removal rig [15]; Other Skill Labour (Civil) [720 h]; Mobile Crane [15 h]; Plant Operator [240 h] | EtW | CC G | YC2 CUL | STAGE2 | PILEREM | 820 | G | 11.21 | C050 | 820_AB | RRIW |  |  |  | 1no. |  |  |  |
| 8200CCG792a |  | Remove & Re-install WP Cofferdam for 2nd Cut |  | 4d | 2011-12-05 A | 2011-12-09 A | 8200CCG791 | 100% | 2012-03-10 | 2012-03-14 |  | Cal 6 | Mobile Crane [8 h]; Other Skill Labour (Civil) [384 h]; Plant Operator [64 h] | EtW | CC G | YC2 CUL | STAGE2 |  |  | G | 11.21 | C050 | 820_AB |  |  |  |  |  |  |  |  |
| 8200CCG792b |  | Barrette Removal (B15) 2nd Cut |  | 18d | 2011-12-10 A | 2011-12-31 A | 8200CCG792, 8200CCG792a | 100% | 2012-03-17 | 2012-11-06 |  | Cal 6 | Mobile Crane [15 h]; Pile Removal [0.5 Nos]; Plant Operator [240 h]; Pile Removal rig [15]; Other Skill Labour (Civil) [720 h] | EtW | CC G | YC2 CUL | STAGE2 |  |  | G | 11.21 | C050 | 820_AB |  |  |  |  |  |  |  |  |
| 8200CCG794 |  | Barrette Backfilling |  | 3d | 2012-01-03 A | 2012-01-03 A | 8200y960 FF, 8200sum680 FF, 8200CCG792b | 100% | 2012-01-16 | 2012-01-18 |  | Cal 6 | Other Skill Labour (Civil) [144 h]; Plant Operator [24 h]; Backhoe [3 h] | EtW | CC G | YC2 CUL | STAGE2 | PILEREM | 820 | G | 11.21 | C050 | 820_AB | RRIW |  |  |  |  |  |  |  |
| 8200CCG796 |  | Culvert Base & Top Slabs Reinstatement |  | 66d | 2012-01-04 A | 2012-04-17 A | 8200CCG794 | 100% | 2012-01-19 | 2012-11-07 |  | Cal 6 | Steel Fixer [480 h]; Concretor [480 h]; Other Skill Labour (Civil) [960 h]; Mobile Crane [10 h]; Plant Operator [160 h]; Carpenter [480 h] | EtW | CC G | YC2 CUL | STAGE2 | 1 | 820 | G | 11.21 | C050 | 820_AB | RRIW |  |  |  |  |  |  |  |
| 8200CCG798 |  | Backfill and Road Reinstatement |  | 24d | 2012-05-02 A | 2012-08-31 A | 8200CCG796 | 100% | 2013-01-09 | 2013-02-05 |  | Cal 1 | Other Skill Labour (Civil) [384 h]; Plant Operator [128 h]; Backhoe [8 h]; Roller [8] | EtW | CC G | YC2 CUL | STAGE2 | 1 | 820 | G | 11.21 | C050 | 820_AB | RRIW |  |  |  |  |  |  |  |

| ID | WBS | Activity | Type | Duration | Start | Finish | Predecessors | Complete | Remaining | Planned start | Planned finish | Total float | Free float | Constraint | Calendar | Resources | Responsible by | LEVEL 1 | LEVEL 2 | LEVEL 3 | Cost Centre | Works Area | Phases of Works | 820_As-built | SUMMARY | Contracts | Classification of Works | Priority A | Sum1 | TBM UT f | TBM UT s | QUANTITY | TBM DT s | TBM DT f | Order | Responsible (bm makes Global) |
| --- | --- | --- | --- | --- | --- | --- | --- | --- | --- | --- | --- | --- | --- | --- | --- | --- | --- | --- | --- | --- | --- | --- | --- | --- | --- | --- | --- | --- | --- | --- | --- | --- | --- | --- | --- | --- |
|  | 1 | **Stage 3** |  |  | 2012-10-16 | 2015-06-03 |  |  |  |  |  |  |  |  |  |  |  |  |  |  |  |  |  |  |  |  |  |  |  |  |  |  |  |  |  |  |
| 8200CCG707 |  | TTMs Stage 3 for Barrette B13 Removal |  | 6d | 2012-10-16 A | 2012-10-22 A | 8200CCG798, 8200CCG798 FF | 100% |  | 2012-10-31 | 2012-11-06 |  |  | start on or after 2012-10-16 | Cal 1 |  | EtW | CC G | YC2 CUL | STAGE2 | G | 11.21 | C040 | 820_AB |  |  |  |  |  |  |  |  |  |  |  |  |
| 8200CCG710 |  | Remove Culvert Top Slab |  | 6d | 2012-10-24 A | 2012-10-31 A | 8200CCG707, 8200CCG705 | 100% |  | 2012-11-07 | 2012-11-13 |  |  |  | Cal 1 | Other Skill Labour (Civil) [288 h]; Mobile Crane [6 h]; Plant Operator [48 h] | EtW | CC G | YC2 CUL | STAGE1 | G | 11.21 |  | 820_AB | 1 | 820 | RRIW |  |  |  |  |  |  |  |  |  |
| 8200sum690 |  | Stage 3: YC2 Barrettes Removal (B13 - UT) | level of effort | 231d | 2012-10-24 A | 2012-12-20 A | 8200CCG710 SS | 100% |  | 2012-11-07 | 2013-06-25 |  |  |  |  |  |  |  |  |  | G | 11.21 |  | 820_AB |  |  |  | 4 | S1 | 2013-05-04 | 2013-05-04 |  |  |  |  |  |
| 8200CCG715 |  | Install Working Platform & Mini Cofferdam for 1st Cut |  | 8d | 2012-11-01 A | 2012-11-09 A | 8200CCG710 | 100% |  | 2012-11-30 | 2012-12-08 |  |  |  | Cal 6 | Plant Operator [64 h]; Other Skill Labour (Civil) [384 h]; Mobile Crane [8 h] | EtW | CC G | YC2 CUL | STAGE1 | G | 11.21 |  | 820_AB | 1 | 820 | RRIW |  |  |  |  |  |  |  |  |  |
| 8200CCG720 |  | Barrette Removal (B13) 1st Cut |  | 15d | 2012-11-10 A | 2012-11-24 A | 8200CCG715, 8200CCG710 | 100% |  | 2012-11-10 | 2012-11-27 |  |  |  | Cal 6 | Pile Removal [0.5 Nos]; Other Skill Labour (Civil) [1152 h]; Mobile Crane [24 h]; Plant Operator [384 h]; Pile Removal rig [24] | EtW | CC G | YC2 CUL | STAGE1 | G | 11.21 |  | 820_AB | PILEREM | 820 | RRIW |  |  |  |  | 1no |  |  |  |  |
| 8200CCG720a |  | Install Working Platform & Mini Cofferdam for 2nd Cut |  | 8d | 2012-11-26 A | 2012-12-04 A | 8200CCG720 | 100% |  | 2012-12-18 | 2012-12-28 |  |  |  | Cal 6 | Other Skill Labour (Civil) [384 h]; Plant Operator [64 h]; Mobile Crane [8 h] | EtW | CC G | YC2 CUL | STAGE1 | G | 11.21 |  | 820_AB |  |  |  |  |  |  |  |  |  |  |  |  |
| 8200CCG720b |  | Barrette Removal (B13) 2nd Cut |  | 15d | 2012-12-05 A | 2012-12-20 A | 8200CCG720a | 100% |  | 2012-12-05 | 2012-12-21 |  |  |  | Cal 6 | Plant Operator [384 h]; Pile Removal rig [24]; Pile Removal [0.5 Nos]; Other Skill Labour (Civil) [1152 h]; Mobile Crane [24 h] | EtW | CC G | YC2 CUL | STAGE1 | G | 11.21 |  | 820_AB | PILEREM | 820 | RRIW |  |  |  |  |  |  |  |  |  |
| 8200CCG725 |  | Barrette Backfill |  | 3d | 2012-12-21 A | 2012-12-24 A | 8200CCG720, 8200y970 FF, 8200CCG720b | 100% |  |  |  |  |  |  | Cal 6 | Other Skill Labour (Civil) [144 h]; Mobile Crane [3 h]; Plant Operator [24 h] | EtW | CC G | YC2 CUL | STAGE1 | G | 11.21 |  | 820_AB | PILEREM | 820 | RRIW |  |  |  |  |  |  |  |  |  |
| 8200CCG730 |  | Culvert Base Slab Reinstatement |  | 33d | 2012-12-27 A | 2013-01-26 A | 8200CCG725 | 100% |  | 2012-12-27 | 2013-02-04 |  |  |  | Cal 6 | Other Skill Labour (Civil) [384 h]; Mobile Crane [8 h]; Plant Operator [64 h]; Carpenter [384 h] | EtW | CC G | YC2 CUL | STAGE1 | G | 11.21 |  | 820_AB | 1 | 820 | RRIW |  |  |  |  |  |  |  |  |  |
| 8200CCG732 |  | Culvert Top Slab Temp. Reinstatement |  | 33d | 2013-01-28 A | 2013-02-27 A | 8200CCG730 | 100% |  | 2013-01-28 | 2013-03-09 |  |  |  | Cal 1 | Other Skill Labour (Civil) [960 h]; Plant Operator [160 h]; Carpenter [960 h] | EtW | CC G | YC2 CUL | STAGE1 | G | 11.21 |  | 820_AB |  |  |  |  |  |  |  |  |  |  |  |  |
| 8200CCG1020 |  | Compensation grout (after TBM U/T pass through) |  | 24d | 2014-04-22 A | 2014-05-09 A | 8200CCG732, 8200TBC910 FS+14d | 100% |  | 2014-04-22 | 2014-05-23 |  |  |  | Cal 1 | Other Skill Labour (Civil) [288 h] | EtW | CC G | YC2 CUL | STAGE1 | G | 11.21 |  | 820_AB | 1 | 820 | RRIW |  |  |  |  |  |  |  |  |  |
| 8200CCG755 |  | Top Slab Reinstatement |  | 36d | 2014-05-10 A | 2014-06-14 A | 8200TBC910, 8200CCG1020 | 100% |  | 2014-05-10 | 2014-06-25 |  |  |  | Cal 1 | Other Skill Labour (Civil) [1152 h]; Plant Operator [288 h]; Backhoe [288 h] | EtW | CC G | YC2 CUL | STAGE1 | G | 11.21 |  | 820_AB | 1 | 820 | RRIW |  |  |  |  |  |  |  |  |  |
| 8200CCG760 |  | Road Reinstatement / Final TTA |  | 54d | 2014-06-16 A | 2015-06-03 | 8200CCF860, 8200CCG755 | 95% | 2.7d | 2014-06-16 | 2014-08-23 | -18.7d | 0d |  | Cal 1 | Other Skill Labour (Civil) [1728 h]; Plant Operator [384 h]; Backhoe [432 h] | EtW | CC G | YC2 CUL | STAGE1 | G | 11.21 | C040 | 820_AB | 1 | 820 | RRIW |  |  |  |  |  |  |  |  |  |
|  | 60 | **Completion** |  |  | 2012-05-02 | 2015-04-30 |  |  |  |  |  |  |  |  |  |  |  |  |  |  |  |  |  |  |  |  |  |  |  |  |  |  |  |  |  |  |
| 8200CCG799a |  | Prepare & Submit Draft As-built Drawings |  | 24d | 2012-05-02 A | 2015-03-13 A | 8200CCG760 | 100% |  | 2012-05-02 | 2012-05-29 |  |  |  | Cal 3 |  | EtW | CC G | YC2 CUL | O&M AsB | G | 11.21 |  | 820_AB |  |  |  |  |  |  |  |  |  |  |  |  |
| 8200CCG799b |  | Prepare & Submit As-built Drawings |  | 24d | 2012-05-02 A | 2015-04-30 A | 8200CCG799a | 100% |  | 2012-05-02 | 2012-05-29 |  |  |  | Cal 3 |  | EtW | CC G | YC2 CUL | O&M AsB | G | 11.21 |  | 820_AB |  |  |  |  |  |  |  |  |  |  |  |  |
|  | 50 | **G3 NC1 DSD Culvert - Remove Barrette** |  |  | 2010-05-12 | 2013-12-18 |  |  |  |  |  |  |  |  |  |  |  |  |  |  |  |  |  |  |  |  |  |  |  |  |  |  |  |  |  |  |
| 8200y980 |  | Barrette Removal B28 & B27 (DT) | level of effort | 481d | 2010-10-26 A | 2011-03-21 A | 8200CCG802 SS | 100% |  | 2011-04-16 | 2012-08-08 |  |  |  |  |  |  |  |  |  | G | 11.21 |  | 820_AB |  |  |  | 4 | S1 |  |  |  | 2012-08-19 | 2012-08-19 | 1 |  |
| 8200y990 |  | Barrette Removal B24,B21 & B22 (UT) | level of effort | 510d | 2010-10-26 A | 2012-04-19 A | 8200CCG898 SS | 100% |  | 2011-04-16 | 2012-09-06 |  |  |  |  |  |  |  |  |  | G | 11.21 |  | 820_AB |  |  |  | 4 | S1 | 2013-08-18 | 2013-08-18 |  |  |  | 2 |  |
|  | 10 | **Method Statement Submission and Approval** |  |  | 2010-05-12 | 2010-09-27 |  |  |  |  |  |  |  |  |  |  |  |  |  |  |  |  |  |  |  |  |  |  |  |  |  |  |  |  |  |  |
| 8200MTG245 |  | Tree Transplant Application Preparation |  | 81d | 2010-05-12 A | 2010-08-17 A | 8200KD1020 | 100% |  | 2011-02-28 | 2011-06-09 |  |  |  | Cal 3 |  |  | CC G | NC1 CUL | MS PREP | G | 11.21 | C010 | 820_AB | 1 | 820 |  |  |  |  |  |  |  |  |  | ARo |
| 8200MTG210 |  | MS Preparation |  | 9d | 2010-08-14 A | 2010-08-24 A | 8200KD1020 | 100% |  | 2011-02-28 | 2011-03-09 |  |  |  | Cal 3 |  |  | CC G | NC1 CUL | MS PREP | G | 11.21 | C010 | 820_AB | 1 | 820 |  |  |  |  |  |  |  |  |  | ARo |
| 8200MTG225 |  | MS Re-submission Preparation |  | 9d | 2010-08-14 A | 2010-08-24 A | 8200MTG220 | 100% |  |  |  |  |  |  | Cal 3 |  |  | CC G | NC1 CUL | MS PREP | G | 11.21 | C010 | 820_AB | 1 | 820 |  |  |  |  |  |  |  |  |  | ARo |
| 8200MTG255 |  | Application Approval by LandS Department |  | 22d | 2010-08-17 A | 2010-09-07 A | 8200MTG250 | 100% |  | 2011-03-27 | 2011-04-17 |  |  |  |  |  |  | CC G | NC1 CUL | MS PREP | G | 11.21 | C010 | 820_AB | 1 | 820 |  |  |  |  |  |  |  |  |  | ARo |
| 8200MTG250 |  | Application Submit to LandS Department | milestone | 0d | 2010-08-17 A | 2010-08-17 A | 8200MTG245 | 100% |  | 2011-03-26 | 2011-03-26 |  |  |  | Cal 3 |  |  | CC G | NC1 CUL | MS PREP | G | 11.21 | C010 | 820_AB | 1 | 820 |  |  |  |  |  |  |  |  |  | ARo |
| 8200MTG215 |  | MS Submission to MTR/DSD | milestone | 0d | 2010-08-24 A | 2010-08-24 A | 8200MTG210, 8200KD1020 | 100% |  | 2011-03-26 | 2011-03-26 |  |  |  | Cal 3 |  |  | CC G | NC1 CUL | MS PREP | G | 11.21 | C010 | 820_AB | 1 | 820 |  |  |  |  |  |  |  |  |  | ARo |
| 8200MTG230 |  | MS Submission to MTR/DSD | milestone | 0d | 2010-08-24 A | 2010-08-24 A | 8200MTG225 | 100% |  | 2011-05-18 | 2011-05-18 |  |  |  | Cal 3 |  |  | CC G | NC1 CUL | MS PREP | G | 11.21 | C010 | 820_AB | TTMS AP | 820 |  |  |  |  |  |  |  |  |  | ARo |
| 8200MTG220 |  | MS Comment by MTR/DSD |  | 34d | 2010-08-25 A | 2010-09-27 A | 8200MTG215 | 100% |  | 2011-03-27 | 2011-04-29 |  |  |  |  |  |  | CC G | NC1 CUL | MS PREP | G | 11.21 | C010 | 820_AB | 1 | 820 |  |  |  |  |  |  |  |  |  | ARo |
| 8200MTG235 |  | MS Comment & Approval by MTR/DSD |  | 34d | 2010-08-25 A | 2010-09-27 A | 8200MTG230 | 100% |  | 2011-05-19 | 2011-06-21 |  |  |  |  |  |  | CC G | NC1 CUL | MS PREP | G | 11.21 | C010 | 820_AB | 1 | 820 |  |  |  |  |  |  |  |  |  | ARo |
| 8200MTG240 |  | Issue for Construction | milestone | 0d | 2010-09-27 A | 2010-09-27 A | 8200MTG235, 8200MTG220 FS+1d | 100% |  | 2011-06-15 | 2011-06-15 |  |  |  | Cal 3 |  |  | CC G | NC1 CUL | MS PREP | G | 11.21 | C010 | 820_AB | 1 | 820 |  |  |  |  |  |  |  |  |  | ARo |

| ID | WBS | Activity | Type | Duration | Start | Finish | Predecessors | Complete | Planned start | Planned finish | Calendar | Resources | LEVEL 1 | LEVEL 2 | LEVEL 3 | SUMMARY | Contracts | Cost Centre | Works Area | Phases of Works | 820_As-built | Responsible by | Classification of Works | QUANTITY | Rate |
| --- | --- | --- | --- | --- | --- | --- | --- | --- | --- | --- | --- | --- | --- | --- | --- | --- | --- | --- | --- | --- | --- | --- | --- | --- | --- |
|  | 20 | **TTM Scheme Submisssion & Approval** |  |  | 2010-05-12 | 2010-10-05 |  |  |  |  |  |  |  |  |  |  |  |  |  |  |  |  |  |  |  |
| 8200TMG300 |  | Prepare Temp.Traffic Management (for S.2 &S.2.1) |  | 22d | 2010-05-12 A | 2010-06-08 A | 8200KD1020 | 100% | 2011-02-28 | 2011-03-24 | Cal 1 |  | CC G | NC1 CUL | TTMPREP | TTMS AP | 820 | G | 11.21 | C040 | 820_AB |  |  |  |  |
| 8200TMG335 |  | Prepare Temp.Traffic Management(for U/T Group) |  | 12d | 2010-05-12 A | 2010-05-27 A | 8200KD1020 | 100% | 2011-02-28 | 2011-03-12 | Cal 1 |  | CC G | NC1 CUL | TTMPREP | TTMS AP | 820 | G | 11.21 | C040 | 820_AB |  |  |  |  |
| 8200TMG350 |  | Prepare TTMS for Tree Transplant(for D/T Group) |  | 83d | 2010-05-12 A | 2010-08-27 A | 8200KD1020 | 100% | 2011-02-28 | 2011-06-17 | Cal 1 |  | CC G | NC1 CUL | TTMPREP | TTMS AP | 820 | G | 11.21 | C040 | 820_AB |  |  |  |  |
| 8200TMG340 |  | TTM reviewed by SLG (S.2) |  | 70d | 2010-05-28 A | 2010-08-05 A | 8200TMG335 | 100% | 2011-03-13 | 2011-05-21 |  |  | CC G | NC1 CUL | TTMPREP | TTMS AP | 820 | G | 11.21 | C040 | 820_AB |  |  |  |  |
| 8200TMG355 |  | TTM reviewed by SLG (S.2.1) |  | 70d | 2010-05-28 A | 2010-08-05 A | 8200TMG350 | 100% | 2011-03-13 | 2011-05-21 |  |  | CC G | NC1 CUL | TTMPREP | TTMS AP | 820 | G | 11.21 | C040 | 820_AB |  |  |  |  |
| 8200TMG315 |  | TTM reviewed by SLG |  | 30d | 2010-06-03 A | 2010-07-02 A | 8200TMG310 | 100% | 2011-06-26 | 2011-07-25 |  |  | CC G | NC1 CUL | TTMPREP | TTMS AP | 820 | G | 11.21 | C040 | 820_AB |  |  |  |  |
| 8200TMG305 |  | TTM reviewed by SLG |  | 74d | 2010-06-09 A | 2010-08-21 A | 8200TMG300 | 100% | 2011-03-25 | 2011-06-06 |  |  | CC G | NC1 CUL | TTMPREP | TTMS AP | 820 | G | 11.21 | C040 | 820_AB |  |  |  |  |
| 8200TMG325 |  | XP Application & Approval |  | 22d | 2010-07-13 A | 2010-08-03 A | 8200TMG315 FF+6d, 8200TMG305 SS+30d | 100% | 2011-05-31 | 2011-06-21 |  |  | CC G | NC1 CUL | TTMPREP |  | 820 | G | 11.21 | C040 | 820_AB |  |  |  |  |
| 8200TMG320 |  | Notification to RMO |  | 29d | 2010-07-16 A | 2010-08-13 A | 8200TMG315 | 100% | 2011-07-24 | 2011-08-21 |  |  | CC G | NC1 CUL | TTMPREP | TTMS AP | 820 | G | 11.21 | C040 | 820_AB |  |  |  |  |
| 8200TMG345 |  | Notification to RMO |  | 12d | 2010-08-06 A | 2010-08-17 A | 8200TMG340 | 100% | 2011-05-22 | 2011-06-02 |  |  | CC G | NC1 CUL | TTMPREP | TTMS AP | 820 | G | 11.21 | C040 | 820_AB |  |  |  |  |
| 8200TMG360 |  | Notification to RMO |  | 12d | 2010-08-06 A | 2010-08-17 A | 8200TMG355 | 100% | 2011-05-22 | 2011-06-02 |  |  | CC G | NC1 CUL | TTMPREP | TTMS AP | 820 | G | 11.21 | C040 | 820_AB |  |  |  |  |
| 8200TMG310 |  | Resubmit TTM |  | 19d | 2010-08-23 A | 2010-09-15 A | 8200TMG305 | 100% | 2011-06-18 | 2011-07-13 | Cal 1 |  | CC G | NC1 CUL | TTMPREP | TTMS AP | 820 | G | 11.21 | C040 | 820_AB |  |  |  |  |
| 8200TMG330 |  | Implement TTM | milestone | 0d | 2010-10-05 A | 2010-10-05 A | 8200TMG325, 8200TMG320 FS+1d | 100% | 2011-08-11 | 2011-08-11 |  |  | CC G | NC1 CUL | TTMPREP | TTMS AP | 820 | G | 11.21 | C040 | 820_AB |  |  |  |  |
|  | 30 | **TBM D/T Culvert** |  |  | 2010-05-19 | 2012-03-31 |  |  |  |  |  |  |  |  |  |  |  |  |  |  |  |  |  |  |  |
| 8200CCG706 |  | Works Area 11.32 | milestone | 0d | 2010-05-19 A | 2010-05-19 A | 8200AC1380 SS | 100% | 2011-02-28 | 2011-02-28 |  |  | CC G | NC1 CUL | TBMD/TC | 1 | 820 | G | 11.21 |  | 820_AB | EtW |  |  |  |
| 8200CCG704 |  | Works Area 11.31 | milestone | 0d | 2010-05-25 A | 2010-05-25 A | 8200AC1370 SS | 100% | 2011-02-28 | 2011-02-28 |  |  | CC G | NC1 CUL | TBMD/TC | 1 | 820 | G | 11.21 |  | 820_AB | EtW |  |  |  |
| 8200CCG800 |  | Group B Tree Transplant (T9752-54, UC0009-10) Preparation & Transplant |  | 62d | 2010-08-18 A | 2010-10-18 A | 8200TMG360 | 100% | 2011-02-28 | 2011-04-30 |  | Other Skill Labour (Civil) [2976 h]; Plant Operator [496 h]; Mobile Crane [62 h] | CC G | NC1 CUL | TBMD/TC | 1 | 820 | G | 11.21 |  | 820_AB | EtW |  |  |  |
| 8200CCG702 |  | Works Area 11.21 (Subject to SLG Approval) | milestone | 0d | 2010-09-20 A | 2010-09-20 A | 8200AC1140 SS | 100% | 2011-02-28 | 2011-02-28 |  |  | CC G | NC1 CUL | TBMD/TC | 1 | 820 | G | 11.21 |  | 820_AB | EtW |  |  |  |
| 8200CCG799 |  | GI works for NC1 Barrette Removal |  | 72d | 2010-09-25 A | 2010-12-20 A | 8200KD1020 FS+129d | 100% | 2011-02-28 | 2011-06-02 | Cal 1 | Drilling Rig [28 h]; Other Skill Labour (Civil) [1344 h]; Plant Operator [224 h] | CC G | NC1 CUL | TBMD/TC |  |  | G | 11.21 |  | 820_AB | EtW |  |  |  |
| 8200CCG802 |  | TTA Stage 1 and 2.1 |  | 36d | 2010-10-26 A | 2010-12-06 A | 8200CCG800 FF+6d, 8200TMG330, 8200CCG702, 8200CCF794, 8200CCG704, 8200CCG706 | 100% | 2011-04-14 | 2011-06-03 | Cal 1 | Other Skill Labour (Civil) [720 h]; Plant Operator [240 h]; Mobile Crane [15 h]; Backhoe [15 h] | CC G | NC1 CUL | TBMD/TC | 1 | 820 | G | 11.21 | C040 | 820_AB | EtW | RRIW |  |  |
| 8200CCG804 |  | ELS Works to Culvert Level |  | 14d | 2010-12-23 A | 2011-01-12 A | 8200MTG240, 8200CCG802 FF, 8200CCG802, 8200CCG876 | 100% | 2011-05-07 | 2011-05-26 | Cal 1 | Other Skill Labour (Civil) [1152 h]; Plant Operator [96 h]; Mobile Crane [12 h]; Excavation - Soft [96 m3] | CC G | NC1 CUL | TBMD/TC | 1 | 820 | G | 11.21 | C050 | 820_AB | EtW | RRIW | 45mLx12mD | 10mL/d |
| 8200CCG806 |  | Probing for Existing Barrettes |  | 1d | 2011-01-12 A | 2011-01-12 A | 8200CCG799, 8200CCG802 SS | 100% | 2011-04-14 | 2011-04-14 | Cal 1 | Other Skill Labour (Civil) [1152 h]; Plant Operator [96 h]; Mobile Crane [12 h] | CC G | NC1 CUL | TBMD/TC | 1 | 820 | G | 11.21 |  | 820_AB | EtW | RRIW |  |  |
| 8200CCG808 |  | Remove Top Slab of Culvert |  | 4d | 2011-01-13 A | 2011-01-17 A | 8200CCG804 | 100% | 2011-11-01 | 2011-11-04 | Cal 6 | Other Skill Labour (Civil) [288 h]; Plant Operator [48 h]; Drilling Jumbo [6 h] | CC G | NC1 CUL | TBMD/TC | 1 | 820 | G | 11.21 |  | 820_AB | EtW | RRIW |  |  |
| 8200CCG816 |  | Barrette Removal (B28) |  | 37d | 2011-01-27 A | 2011-03-17 A |  | 100% | 2012-01-04 | 2012-02-22 | Cal 6a (Extend Dry Season to Apr) | Pile Removal [1 Nos]; Other Skill Labour (Civil) [2304 h]; Plant Operator [384 h]; Mobile Crane [24 h]; Pile Removal rig [24] | CC G | NC1 CUL | TBMD/TC | PILEREM | 820 | G | 11.21 |  | 820_AB | EtW | RRIW | 1no. |  |
| 8200CCG818 |  | Reinstate Culvert Base Slab |  | 26d | 2011-03-14 A | 2011-04-13 A | 8200CCG817, 8200CCG816 | 100% | 2011-11-26 | 2011-12-28 | Cal 6a (Extend Dry Season to Apr) | Other Skill Labour (Civil) [576 h]; Plant Operator [96 h]; Carpenter [576 h]; Backhoe [12 h]; Steel Fixer [576 h]; Concretor [576 h] | CC G | NC1 CUL | TBMD/TC | 1 | 820 | G | 11.21 |  | 820_AB | EtW | RRIW |  |  |
| 8200CCG818a |  | Install Temp.Cover at Culvert Top Slab |  | 26d | 2011-03-14 A | 2011-04-13 A | 8200CCG818 FS-10d | 100% | 2011-11-01 | 2011-11-30 | Cal 6a (Extend Dry Season to Apr) | Other Skill Labour (Civil) [480 h]; Plant Operator [80 h]; Mobile Crane [10 h] | CC G | NC1 CUL | TBMD/TC |  |  | G | 11.21 |  | 820_AB | EtW |  |  |  |
| 8200CCG817 |  | Barrette Backfilling |  | 3d | 2011-03-18 A | 2011-03-21 A | 8200CCG816, 8200y980 FF | 100% | 2011-11-01 | 2011-11-03 | Cal 6a (Extend Dry Season to Apr) | Other Skill Labour (Civil) [144 h]; Plant Operator [24 h]; Backhoe [3 h] | CC G | NC1 CUL | TBMD/TC |  |  | G | 11.21 |  | 820_AB | EtW |  |  |  |
| 8200CCG818b |  | Temp.Backfill & Reinstate Pavement |  | 11d | 2011-04-14 A | 2011-04-30 A | 8200CCG818, 8200CCG818a | 100% | 2011-06-21 | 2011-07-04 | Cal 1 | Other Skill Labour (Civil) [480 h]; Plant Operator [80 h]; Backhoe [10 h] | CC G | NC1 CUL | TBMD/TC | 1 | 820 | G | 11.21 |  | 820_AB | EtW | RRIW |  |  |
| 8200CCG824 |  | TTA Stage 3 |  | 2d | 2011-05-05 A | 2011-05-06 A | 8200CCG878, 8200CCG818b, 8200TMG330 | 100% | 2011-06-21 | 2011-06-22 | Cal 1 | Backhoe [70 h]; Other Skill Labour (Civil) [10080 h]; Plant Operator [560 h] | CC G | NC1 CUL | TBMD/TC | 1 | 820 | G | 11.21 | C040 | 820_AB | EtW | RRIW |  |  |
| 8200CCG809 |  | Cofferdam installation and Excavation at B27 |  | 18d | 2011-10-03 A | 2011-10-22 A | 8200CCG909d, 8200CCG909e SS | 100% | 2012-02-27 | 2012-03-17 | Cal 1 | Excavation - Soft [130 m3]; Plant Operator [120 h]; Backhoe [15 h]; Other Skill Labour (Civil) [720 h] | CC G | NC1 CUL | TBMD/TC |  |  | G | 11.21 |  | 820_AB | EtW |  |  |  |
| 8200CCG809a |  | Saw Cut Culvert Top Slab at B27 |  | 6d | 2011-10-24 A | 2011-11-02 A | 8200CCG809 | 100% | 2012-03-19 | 2012-03-24 | Cal 1 | Other Skill Labour (Civil) [336 h] | CC G | NC1 CUL | TBMD/TC |  |  | G | 11.21 |  | 820_AB | EtW |  |  |  |
| 8200CCG810 |  | Temp. Working Platform for Barrette Removal |  | 12d | 2011-10-26 A | 2011-11-09 A | 8200CCG808, 8200CCG809a, 8200CCG818, 8200CCG809 | 100% | 2012-03-26 | 2012-04-14 | Cal 1 | Other Skill Labour (Civil) [480 h]; Plant Operator [80 h]; Mobile Crane [10 h] | CC G | NC1 CUL | TBMD/TC | 1 | 820 | G | 11.21 |  | 820_AB | EtW | RRIW |  |  |
| 8200CCG812 |  | Barrette Removal (B27) |  | 40d | 2011-11-10 A | 2011-12-29 A | 8200CCG808, 8200CCG810, 8200CCG794 FS+3d, 8200CCG806, 8200CCG804 | 100% | 2012-11-14 | 2013-01-02 | Cal 6a (Extend Dry Season to Apr) | Pile Removal [1 Nos]; Other Skill Labour (Civil) [2304 h]; Plant Operator [384 h]; Mobile Crane [24 h]; Pile Removal rig [24] | CC G | NC1 CUL | TBMD/TC | PILEREM | 820 | G | 11.21 |  | 820_AB | EtW | RRIW | 1no. |  |
| 8200CCG813 |  | Barrette Backfilling |  | 3d | 2011-12-30 A | 2012-01-04 A | 8200y980 FF, 8200CCG812 | 100% | 2013-01-03 | 2013-01-05 | Cal 6a (Extend Dry Season to Apr) | Backhoe [3 h]; Other Skill Labour (Civil) [144 h]; Plant Operator [24 h] | CC G | NC1 CUL | TBMD/TC |  |  | G | 11.21 |  | 820_AB | EtW |  |  |  |
| 8200CCG814a |  | Reinstate Culvert Base Slab |  | 48d | 2012-02-06 A | 2012-03-31 A | 8200CCG930 FF, 8200CCG812, 8200CCG813 FS+18d | 100% | 2012-11-15 | 2013-01-12 | Cal 6a (Extend Dry Season to Apr) | Other Skill Labour (Civil); Plant Operator; Mobile Crane; Carpenter | CC G | NC1 CUL | TBMD/TC | 1 | 820 | G | 11.21 |  | 820_AB | EtW | RRIW |  |  |

| ID | WBS | Activity | Type | Duration | Start | Finish | Predecessors | Complete | Planned start | Planned finish | Constraint | Calendar | Resources | Responsible by | LEVEL 1 | LEVEL 2 | LEVEL 3 | SUMMARY | Contracts | Cost Centre | Works Area | 820_As-built | Phases of Works | Classification of Works | QUANTITY | Rate |
| --- | --- | --- | --- | --- | --- | --- | --- | --- | --- | --- | --- | --- | --- | --- | --- | --- | --- | --- | --- | --- | --- | --- | --- | --- | --- | --- |
|  | 40 | **TBM U/T Culvert** |  |  | 2010-08-18 | 2013-11-23 |  |  |  |  |  |  |  |  |  |  |  |  |  |  |  |  |  |  |  |  |
| 8200CCG878 |  | Group D Tree Transplant (T8838,T8843-44) Preparation & Transplant |  | 122d | 2010-08-18 A | 2010-12-17 A | 8200TMG345 | 100% | 2011-02-28 | 2011-06-29 |  |  |  | EtW | CC G | NC1 CUL | TBMU/TC | 1 | 820 | G | 11.21 | 820_AB |  |  |  |  |
| 8200CCG876 |  | Group B Tree Transplant (T9752-54,T8836-37, UC0009-10)Preparation & Transplant |  | 60d | 2010-09-08 A | 2010-11-06 A | 8200MTG255, 8200TMG360 | 100% | 2011-02-28 | 2011-04-28 |  |  |  | EtW | CC G | NC1 CUL | TBMU/TC | 1 | 820 | G | 11.21 | 820_AB |  |  |  |  |
| 8200CCG880 |  | Tree Transplant Complete by 801 Designated Contractor | milestone | 0d | 2010-09-12 A | 2010-09-12 A |  | 100% | 2011-02-28 | 2011-02-28 | finish on or after 2010-09-12 |  |  | EtW | CC G | NC1 CUL | TBMU/TC | 1 | 820 | G | 11.21 | 820_AB |  |  |  |  |
| 8200CCG882 |  | TTMS Implementation |  | 6d | 2010-09-14 A | 2010-09-21 A | 8200TMG345, 8200CCG880 | 100% | 2011-02-28 | 2011-03-05 |  | Cal 1 | Other Skill Labour (Civil) [864 h] | EtW | CC G | NC1 CUL | TBMU/TC | 1 | 820 | G | 11.21 | 820_AB | C040 | UTD |  |  |
| 8200CCG884 |  | Trial Trench to Expose Existing U/G Utiltiies |  | 12d | 2010-09-22 A | 2010-10-06 A | 8200CCG882 | 100% | 2011-03-07 | 2011-03-19 |  | Cal 1 | Other Skill Labour (Civil) [576 h]; Plant Operator [96 h]; Backhoe [12 h] | EtW | CC G | NC1 CUL | TBMU/TC | 1 | 820 | G | 11.21 | 820_AB | C020 | UTD | 70mL |  |
| 8200CCG898 |  | Probing for Existing Barrettes |  | 1d | 2010-10-26 A | 2010-10-27 A |  | 100% | 2011-04-11 | 2011-04-11 |  | Cal 1 | Other Skill Labour (Civil) [288 h] | EtW | CC G | NC1 CUL | TBMU/TC | 1 | 820 | G | 11.21 | 820_AB |  | RRIW |  |  |
| 8200CCG892 |  | Slew 132kV Cable (CLP207) |  | 81d | 2010-11-05 A | 2011-02-16 A |  | 100% | 2011-04-21 | 2011-08-08 |  | Cal 1 | Other Skill Labour (Civil) [576 h]; Plant Operator [96 h]; Backhoe [12 h] | EtW | CC G | NC1 CUL | TBMU/TC | UTILITY | 820 | G | 11.21 | 820_AB | C020 | UTD | 70mL |  |
| 8200CCG894 |  | Slew Telecom Cable (CATV206&PCCW203) |  | 12d | 2010-11-12 A | 2010-11-25 A | 8200CCG892 FS-6d | 100% | 2011-05-03 | 2011-05-18 |  | Cal 1 | Other Skill Labour (Civil) [576 h]; Plant Operator [96 h]; Backhoe [12 h] | EtW | CC G | NC1 CUL | TBMU/TC | UTILITY | 820 | G | 11.21 | 820_AB | C020 | UTD | 70mL |  |
| 8200CCG900 |  | ELS for Roof Access |  | 21d | 2010-12-27 A | 2011-01-22 A | 8200CCG706, 8200CCG702, 8200CCG704, 8200TMG330, 8200CCG876, 8200CCG894 | 100% | 2011-05-19 | 2011-06-15 |  | Cal 1 | Backhoe [48 h]; Excavation - Soft [96 m3]; Other Skill Labour (Civil) [3456 h]; Plant Operator [768 h]; Mobile Crane [24 h]; Sheet piling rig [24] | EtW | CC G | NC1 CUL | TBMU/TC | 1 | 820 | G | 11.21 | 820_AB | C050 | RRIW | 60mLx12mD | 10mL/d |
| 8200CCG902 |  | Remove Top Slab of Culvert |  | 9d | 2011-01-24 A | 2011-02-05 A | 8200CCG900, 8200CCG900 FF | 100% | 2011-03-28 | 2011-11-05 |  | Cal 6 | Other Skill Labour (Civil) [800 h]; Plant Operator [80 h]; Mobile Crane [10 h] | EtW | CC G | NC1 CUL | TBMU/TC | 1 | 820 | G | 11.21 | 820_AB |  | RRIW |  |  |
| 8200CCG904 |  | Temp. Working Platform for Barrette Removal |  | 5d | 2011-02-07 A | 2011-02-11 A | 8200CCG902, 8200CCG902 FF | 100% | 2011-11-08 | 2011-11-12 |  | Cal 1 | Other Skill Labour (Civil) [2880 h]; Plant Operator [160 h]; Mobile Crane [20 h] | EtW | CC G | NC1 CUL | TBMU/TC | 1 | 820 | G | 11.21 | 820_AB |  | RRIW |  |  |
| 8200CCG906 |  | Barrette Removal (B24) |  | 31d | 2011-02-12 A | 2011-03-21 A | 8200CCG898, 8200CCG902, 8200CCG904 | 100% | 2011-12-06 | 2012-01-13 | start on or after 2011-11-01 | Cal 6a (Extend Dry Season to Apr) | Other Skill Labour (Civil) [1152 h]; Plant Operator [384 h]; Mobile Crane [24 h]; Pile Removal rig [24]; Pile Removal [1 Nos] | EtW | CC G | NC1 CUL | TBMU/TC | PILEREM | 820 | G | 11.21 | 820_AB |  | RRIW | 1no. |  |
| 8200CCG907 |  | Barrette Backfilling |  | 2d | 2011-03-24 A | 2011-03-25 A | 8200CCG906 | 100% | 2011-11-01 | 2011-11-02 |  | Cal 6a (Extend Dry Season to Apr) | Other Skill Labour (Civil) [144 h]; Plant Operator [24 h]; Backhoe [3 h] | EtW | CC G | NC1 CUL | TBMU/TC |  |  | G |  | 820_AB |  |  |  |  |
| 8200CCG908 |  | Reinstate Culvert Base Slab |  | 25d | 2011-03-24 A | 2011-04-26 A | 8200CCG907 | 100% | 2011-11-01 | 2011-11-29 |  | Cal 6a (Extend Dry Season to Apr) | Other Skill Labour (Civil) [432 h]; Plant Operator [72 h]; Mobile Crane [9 h]; Carpenter [432 h] | EtW | CC G | NC1 CUL | TBMU/TC | 1 | 820 | G | 11.21 | 820_AB |  | RRIW |  |  |
| 8200CCG908a |  | Remove Crane Platform & Reinstate Culvert Top Slab |  | 39d | 2011-04-28 A | 2011-06-18 A | 8200CCG908 | 100% | 2011-06-21 | 2011-08-08 |  | Cal 1 |  | EtW | CC G | NC1 CUL | TBMU/TC |  |  | G |  | 820_AB |  |  |  |  |
| 8200CCG908a896 |  | Slew 11kV Cable & Connection (CLP219) |  | 33d | 2011-05-03 A | 2011-06-15 A | 8200CCG892 FS-6d, 8200CCG908a | 100% | 2011-06-21 | 2011-08-01 |  | Cal 1 | Other Skill Labour (Civil) [576 h]; Plant Operator [96 h]; Backhoe [12 h] | EtW | CC G | NC1 CUL | TBMU/TC | UTILITY | 820 | G | 11.21 | 820_AB | C020 | UTD | 70mL |  |
| 8200CCG908b886 |  | Divert 400D&315D Low Pressure Gas Main (GAS206&207) |  | 19d | 2011-06-06 A | 2011-07-09 A | 8200CCG884 FS-6d, 8200CCG908a | 100% | 2011-06-21 | 2011-07-14 |  | Cal 1 | Plant Operator [288 h]; Backhoe [36 h]; Other Skill Labour (Civil) [2880 h] | EtW | CC G | NC1 CUL | TBMU/TC | UTILITY | 820 | G | 11.21 | 820_AB | C020 | UTD | 70mL |  |
| 8200CCG908c888 |  | Divert 200D Freshwater Main (FW211) |  | 35d | 2011-07-06 A | 2011-08-19 A | 8200CCG908a, 8200CCG908b886 SS | 100% | 2011-06-21 | 2011-08-03 |  | Cal 1 | Other Skill Labour (Civil) [864 h]; Plant Operator [144 h]; Backhoe [18 h] | EtW | CC G | NC1 CUL | TBMU/TC | UTILITY | 820 | G | 11.21 | 820_AB | C020 | UTD | 70mL |  |
| 8200CCG908d890 |  | Divert 150D Saltwater Main (SW207) |  | 6d | 2011-07-30 A | 2011-08-06 A | 8200CCG908a, 8200CCG908b886 SS | 100% | 2011-06-21 | 2011-06-27 |  | Cal 1 | Other Skill Labour (Civil) [864 h]; Plant Operator [144 h]; Backhoe [18 h] | EtW | CC G | NC1 CUL | TBMU/TC | UTILITY | 820 | G | 11.21 | 820_AB | C020 | UTD | 70mL |  |
| 8200CCG909a |  | Slew 400kV Cable Group |  | 6d | 2011-08-29 A | 2011-09-05 A | 8200CCG908d890 | 100% | 2012-01-20 | 2012-01-30 |  | Cal 1 | Other Skill Labour (Civil) [1152 h]; Plant Operator [384 h]; Mobile Crane [24 h]; Backhoe [24 h] | EtW | CC G | NC1 CUL | TBMU/TC | 1 | 820 | G | 11.21 | 820_AB | C060 | RRIW | 4nos. |  |
| 8200CCG909c |  | Preparation Work for TTMS Stage 4 |  | 10d | 2011-09-24 A | 2011-10-08 A | 8200CCG909a FS-6d | 100% | 2012-01-30 | 2012-02-09 |  | Cal 1 |  | EtW | CC G | NC1 CUL | TBMU/TC |  |  | G |  | 820_AB |  |  |  |  |
| 8200CCG909d |  | Implement TTMS Stage 4 |  | 1d | 2011-10-10 A | 2011-10-10 A | 8200CCG909c | 100% | 2012-02-25 | 2012-02-25 |  | Cal 1 |  | EtW | CC G | NC1 CUL | TBMU/TC |  |  | G |  | 820_AB |  |  |  |  |
| 8200CCG909e |  | Drive Sheetpile for Barrette Removal (B21 & B22) |  | 6d | 2011-10-11 A | 2011-10-18 A | 8200CCG909d SS, 8200CCG909c | 100% | 2012-02-25 | 2012-03-02 |  | Cal 1 | Other Skill Labour (Civil) [864 h]; Plant Operator [144 h]; Sheet piling rig [18] | EtW | CC G | NC1 CUL | TBMU/TC |  |  | G |  | 820_AB |  |  |  |  |
| 8200CCG909f |  | ELS to Top Slab of Culvert |  | 11d | 2011-10-19 A | 2011-11-01 A | 8200CCG909e | 100% | 2012-03-17 | 2012-03-29 |  | Cal 1 | Backhoe [24 h]; Plant Operator [192 h]; Other Skill Labour (Civil) [1152 h]; Excavation - Soft [800 m3] | EtW | CC G | NC1 CUL | TBMU/TC |  |  | G |  | 820_AB |  |  |  |  |
| 8200CCG910 |  | Barrette Removal (B21) |  | 22d | 2011-11-16 A | 2011-12-12 A | 8200CCG908 FF, 8200CCG909f, 8200CCG908, 8200CCG909a | 100% | 2012-11-01 | 2012-11-26 |  | Cal 6 | Pile Removal [1 Nos]; Other Skill Labour (Civil) [4032 h]; Plant Operator [1008 h]; Mobile Crane [42 h]; Pile Removal rig [42] | EtW | CC G | NC1 CUL | TBMU/TC | PILEREM | 820 | G | 11.21 | 820_AB |  | RRIW | 1no. |  |
| 8200CCG911 |  | Barrette Backfilling |  | 1d | 2011-12-13 A | 2011-12-13 A | 8200CCG910, 8200y990 FF | 100% | 2012-12-19 | 2012-12-19 |  | Cal 6 | Other Skill Labour (Civil) [192 h]; Plant Operator [32 h]; Backhoe [4 h] | EtW | CC G | NC1 CUL | TBMU/TC |  |  | G |  | 820_AB |  |  |  |  |
| 8200CCG928 |  | Barrette Removal (B22) |  | 30d | 2012-01-19 A | 2012-03-10 A | 8200CCG813 FS+13d | 100% | 2012-11-01 | 2012-12-05 |  | Cal 6 | Pile Removal [1 Nos]; Other Skill Labour (Civil) [4032 h]; Plant Operator [1008 h]; Mobile Crane [42 h]; Pile Removal rig [42] | EtW | CC G | NC1 CUL | TBMU/TC | PILEREM | 820 | G | 11.21 | 820_AB |  | RRIW | 1no. |  |
| 8200CCG912 |  | Reinstate Culvert Base Slab |  | 26d | 2012-03-02 A | 2012-03-31 A | 8200CCG911, 8200CCG910, 8200CCG930 SS | 100% | 2012-12-11 | 2013-01-12 |  | Cal 6 | Other Skill Labour (Civil) [480 h]; Plant Operator [80 h]; Carpenter [480 h]; Backhoe [10 h] | EtW | CC G | NC1 CUL | TBMU/TC | 1 | 820 | G | 11.21 | 820_AB |  | RRIW |  |  |
| 8200CCG928a |  | Barrette Backfilling |  | 2d | 2012-04-18 A | 2012-04-19 A | 8200CCG928, 8200y990 FF | 100% | 2012-12-06 | 2012-12-07 |  | Cal 6 | Other Skill Labour (Civil) [192 h]; Plant Operator [32 h]; Backhoe [4 h] | EtW | CC G | NC1 CUL | TBMU/TC |  |  | G |  | 820_AB |  |  |  |  |
| 8200CCG930 |  | Reinstate Culvert Base Slab |  | 26d | 2012-04-24 A | 2012-07-07 A | 8200CCG928, 8200CCG928a FS+2d | 100% | 2012-12-11 | 2013-01-12 |  | Cal 6 | Other Skill Labour (Civil) [480 h]; Plant Operator [80 h]; Carpenter [480 h]; Backhoe [10 h]; Steel Fixer [480 h]; Concretor [480 h] | EtW | CC G | NC1 CUL | TBMU/TC | 1 | 820 | G | 11.21 | 820_AB |  | RRIW |  |  |
| 8200CCG931 |  | 4nos.Pre-bored H Pile Installallation |  | 37d | 2012-05-14 A | 2012-06-30 A | 8200CCG908b886, 8200CCG930, 8200CCG907 FS+3d, 8200CCG908c888, 8200CCG912, 8200CCG908d890, 8200CCG908a896 | 100% | 2013-01-14 | 2013-02-28 |  | Cal 1 | nos. of Pile Installation [4 Nos]; Other Skill Labour (Civil) [5328 h]; Plant Operator [888 h]; Mobile Crane [37 h]; Socketed H-pile Rig [37 h] | EtW | CC G | NC1 CUL | TBMU/TC | 1 | 820 | G | 11.21 | 820_AB | C060 | RRIW | 4nos. |  |
| 8200CCG932 |  | Band Beam Construction for Connect Pile & Box Culvert |  | 24d | 2012-06-01 A | 2012-06-30 A | 8200CCG900, 8200CCG930, 8200CCG931 | 100% | 2013-03-01 | 2013-03-28 |  | Cal 1 | Other Skill Labour (Civil) [1152 h]; Plant Operator [192 h]; Mobile Crane [24 h]; Carpenter [1152 h]; Steel Fixer [1152 h]; Concretor [1152 h] | EtW | CC G | NC1 CUL | TBMU/TC | 1 | 820 | G | 11.21 | 820_AB |  | RRIW |  |  |
| 8200CCG934 |  | Tie-beam Curing & Load Transfer from Box Culvert to Temp.Pile |  | 21d | 2012-07-03 A | 2012-07-21 A | 8200CCG932 | 100% | 2013-04-02 | 2013-04-29 |  | Cal 1 |  | EtW | CC G | NC1 CUL | TBMU/TC | 1 | 820 | G | 11.21 | 820_AB |  | RRIW |  |  |
| 8200CCG936 |  | Permanent Reinstate Culvert Top Slab |  | 72d | 2012-07-10 A | 2012-10-24 A | 8200CCG912, 8200CCG934 | 100% | 2013-04-30 | 2013-08-02 |  | Cal 1 | Other Skill Labour (Civil) [3456 h]; Carpenter [3456 h]; Backhoe [72 h]; Plant Operator [576 h] | EtW | CC G | NC1 CUL | TBMU/TC | 1 | 820 | G | 11.21 | 820_AB |  | RRIW |  |  |
| 8200CCG938 |  | Permanent Reinstatement for DN200 FW Main |  | 31d | 2012-10-25 A | 2012-11-30 A | 8200CCG936 | 100% | 2012-11-28 | 2013-01-05 |  | Cal 1 | Other Skill Labour (Civil) [1200 h]; Plant Operator [400 h]; Backhoe [25 h]; Roller [25] | EtW | CC G | NC1 CUL | TBMU/TC | 1 | 820 | G | 11.21 | 820_AB |  | RRIW |  |  |
| 8200CCG939 |  | Permanent Reinstatement for DN400 Gas Main |  | 19d | 2012-12-01 A | 2012-12-22 A | 8200CCG938 | 100% |  |  |  | Cal 1 | Other Skill Labour (Civil) [1600 h] | EtW | CC G | NC1 CUL | TBMU/TC | 1 | 820 | G | 11.21 | 820_AB |  | RRIW |  |  |
| 8200CCG940 |  | Permanent Reinstatement for CLP 11kV Cables |  | 24d | 2012-12-24 A | 2013-01-23 A | 8200CCG939 | 100% |  |  |  | Cal 1 | Other Skill Labour (Civil) [1600 h] | EtW | CC G | NC1 CUL | TBMU/TC | 1 | 820 | G | 11.21 | 820_AB |  | RRIW |  |  |
| 8200CCG942 |  | Permanent Reinstatement for Telecom Cables |  | 10d | 2013-03-18 A | 2013-08-23 A | 8200CCG941 | 100% | 2013-03-18 | 2013-03-28 |  | Cal 1 | Other Skill Labour (Civil) [1600 h] | EtW | CC G | NC1 CUL | TBMU/TC | 1 | 820 | G | 11.21 | 820_AB |  | RRIW |  |  |
| 8200CCG941 |  | Permanent Reinstatement for CLP 400kV Cables |  | 13d | 2013-08-01 A | 2013-08-16 A | 8200CCG940 | 100% | 2013-01-24 | 2013-02-07 |  | Cal 1 | Other Skill Labour (Civil) [1600 h] | EtW | CC G | NC1 CUL | TBMU/TC | 1 | 820 | G | 11.21 | 820_AB |  | RRIW |  |  |
| 8200CCG943 |  | Backfilling & Road Reinstatement |  | 25d | 2013-08-17 A | 2013-11-23 A | 8200CCG942 | 100% | 2013-08-17 | 2013-09-17 |  | Cal 1 | Roller [25]; Other Skill Labour (Civil) [1200 h]; Plant Operator [400 h]; Backhoe [25 h] | EtW | CC G | NC1 CUL | TBMU/TC | 1 | 820 | G | 11.21 | 820_AB |  | RRIW |  |  |

| ID | WBS | Activity | Type | Duration | Start | Finish | Predecessors | Complete | Planned start | Planned finish | Total float | Free float | Constraint | Calendar | Resources | Responsible by | LEVEL 1 | LEVEL 2 | LEVEL 3 | Cost Centre | Classification of Works | 820_As-built | Priority A | Sum1 | Order | Works Area | Phases of Works | Contracts | SUMMARY | Responsible (bm makes Global) | Classify | Production Rate | QUANTITY |
| --- | --- | --- | --- | --- | --- | --- | --- | --- | --- | --- | --- | --- | --- | --- | --- | --- | --- | --- | --- | --- | --- | --- | --- | --- | --- | --- | --- | --- | --- | --- | --- | --- | --- |
|  | 50 | **Completion** |  |  | 2012-06-01 | 2013-12-18 |  |  |  |  |  |  |  |  |  |  |  |  |  |  |  |  |  |  |  |  |  |  |  |  |  |  |  |
| 8200CCG939a |  | Prepare & Submit Draft As-built Drawings |  | 24d | 2012-06-01 A | 2013-12-18 A | 8200CCG814a, 8200CCG943 | 100% | 2012-06-01 | 2012-06-29 |  |  |  | Cal 3 |  | EtW | CC G | NC1 CUL | O&M AsB | G | RRIW | 820_AB |  |  |  |  |  |  |  |  |  |  |  |
| 8200CCG939b |  | Prepare & Submit As-built Drawings |  | 24d | 2012-06-01 A | 2013-12-18 A | 8200CCG939a | 100% | 2012-06-01 | 2012-06-29 |  |  |  | Cal 3 |  | EtW | CC G | NC1 CUL | O&M AsB | G | RRIW | 820_AB |  |  |  |  |  |  |  |  |  |  |  |
|  | 60 | **Box Culvert FS1 Barrettes Removal** |  |  | 2010-05-24 | 2015-10-10 |  |  |  |  |  |  |  |  |  |  |  |  |  |  |  |  |  |  |  |  |  |  |  |  |  |  |  |
| 8200y1000 |  | Underpinning Works for FS1 / Barrettes Removal | level of effort | 98d | 2011-04-18 A | 2011-11-11 A | 8200CCG965 SS | 100% | 2011-08-31 | 2011-12-06 |  |  |  |  |  |  |  |  |  | G | RRIW | 820_AB | 4 | S1 | 1 | 11.26A | C020 |  |  |  |  |  |  |
|  | 10 | **Temp. Works Design Submission** |  |  | 2010-05-24 | 2010-10-05 |  |  |  |  |  |  |  |  |  |  |  |  |  |  |  |  |  |  |  |  |  |  |  |  |  |  |  |
| 8200DSG400 |  | Temp. Works Design Preparation |  | 45d | 2010-05-24 A | 2010-07-07 A | 8200KD1020 FS+12d | 100% | 2011-02-28 | 2011-04-13 |  |  |  |  |  |  | CC G | BOX FS1 | TEMPWKD | G | RRIW | 820_AB |  |  |  | 11.26A | C010 | 820 |  |  |  |  |  |
| 8200DSG405 |  | Temp. Works Design Submit to MTR | milestone | 0d | 2010-07-07 A | 2010-07-07 A | 8200DSG400 | 100% | 2011-03-28 | 2011-03-28 |  |  |  | Cal 3 |  |  | CC G | BOX FS1 | TEMPWKD | G | RRIW | 820_AB |  |  |  | 11.26A | C010 | 820 | 1 |  |  |  |  |
| 8200DSG410 |  | Temp. Works Design Comment by MTR/DSD |  | 15d | 2010-07-08 A | 2010-07-22 A | 8200DSG405 FF, 8200DSG405 | 100% | 2011-03-28 | 2011-04-11 |  |  |  |  |  |  | CC G | BOX FS1 | TEMPWKD | G | RRIW | 820_AB |  |  |  | 11.26A | C010 | 820 | 1 |  |  |  |  |
| 8200DSG415 |  | Temp. Works Design Re-submission Preparation |  | 15d | 2010-07-22 A | 2010-08-07 A | 8200DSG410 | 100% | 2011-04-26 | 2011-05-14 |  |  |  | Cal 3 |  |  | CC G | BOX FS1 | TEMPWKD | G | RRIW | 820_AB |  |  |  | 11.26A | C010 | 820 | 1 |  |  |  |  |
| 8200DSG420 |  | Temp. Works Design Comment & Approval by MTR/DSD |  | 60d | 2010-08-07 A | 2010-10-05 A | 8200DSG415 FF, 8200DSG415 | 100% | 2011-05-19 | 2011-07-17 |  |  |  |  |  |  | CC G | BOX FS1 | TEMPWKD | G | RRIW | 820_AB |  |  |  | 11.26A | C010 | 820 | 1 |  |  |  |  |
| 8200DSG425 |  | Issue for Construction | milestone | 0d | 2010-10-05 A | 2010-10-05 A | 8200DSG410 FS+1d, 8200DSG420 | 100% | 2011-06-15 | 2011-06-15 |  |  |  | Cal 3 |  |  | CC G | BOX FS1 | TEMPWKD | G | RRIW | 820_AB |  |  |  | 11.26A | C010 | 820 | 1 |  |  |  |  |
|  | 20 | **Method Statement Submission and Approval** |  |  | 2010-07-30 | 2010-09-27 |  |  |  |  |  |  |  |  |  |  |  |  |  |  |  |  |  |  |  |  |  |  |  |  |  |  |  |
| 8200MTG270 |  | MS Preparation |  | 27d | 2010-07-30 A | 2010-08-30 A | 8200KD1020 FS+12d | 100% | 2011-02-28 | 2011-03-30 |  |  |  | Cal 3 |  |  | CC G | BOX FS1 | MS PREP | G | RRIW | 820_AB |  |  |  | 11.26A | C010 | 820 | 1 | ARo |  |  |  |
| 8200MTG285 |  | MS Re-submission Preparation |  | 27d | 2010-07-30 A | 2010-08-30 A | 8200MTG280 | 100% | 2011-04-26 | 2011-05-28 |  |  |  | Cal 3 |  |  | CC G | BOX FS1 | MS PREP | G | RRIW | 820_AB |  |  |  | 11.26A | C010 | 820 | 1 | ARo |  |  |  |
| 8200MTG275 |  | MS Submission to MTR | milestone | 0d | 2010-08-30 A | 2010-08-30 A | 8200MTG270 | 100% | 2011-03-26 | 2011-03-26 |  |  |  | Cal 3 |  |  | CC G | BOX FS1 | MS PREP | G | RRIW | 820_AB |  |  |  | 11.26A | C010 | 820 | 1 | ARo |  |  |  |
| 8200MTG290 |  | MS Submission to MTR | milestone | 0d | 2010-08-30 A | 2010-08-30 A | 8200MTG285, 8200MTG285 FF | 100% | 2011-05-18 | 2011-05-18 |  |  |  | Cal 3 |  |  | CC G | BOX FS1 | MS PREP | G | RRIW | 820_AB |  |  |  | 11.26A | C010 | 820 | 1 | ARo |  |  |  |
| 8200MTG280 |  | MS Comment by MTR/DSD |  | 27d | 2010-09-01 A | 2010-09-27 A | 8200MTG275 | 100% | 2011-03-27 | 2011-04-22 |  |  |  |  |  |  | CC G | BOX FS1 | MS PREP | G | RRIW | 820_AB |  |  |  | 11.26A | C010 | 820 | 1 | ARo |  |  |  |
| 8200MTG295 |  | MS Comment & Approval by MTR/DSD |  | 27d | 2010-09-01 A | 2010-09-27 A | 8200MTG290 | 100% | 2011-05-19 | 2011-06-14 |  |  |  |  |  |  | CC G | BOX FS1 | MS PREP | G | RRIW | 820_AB |  |  |  | 11.26A | C010 | 820 | 1 | ARo |  |  |  |
| 8200MTG300 |  | Issue for Construction | milestone | 0d | 2010-09-27 A | 2010-09-27 A | 8200MTG295, 8200MTG280 FS+1d | 100% | 2011-06-15 | 2011-06-15 |  |  |  | Cal 3 |  |  | CC G | BOX FS1 | MS PREP | G | RRIW | 820_AB |  |  |  | 11.26A | C010 | 820 | 1 | ARo |  |  |  |
|  | 30 | **Utilities Diversion** |  |  |  |  |  |  |  |  |  |  |  |  |  |  |  |  |  |  |  |  |  |  |  |  |  |  |  |  |  |  |  |
|  | 40 | **Underpinning Works for FS1** |  |  | 2011-04-18 | 2015-08-13 |  |  |  |  |  |  |  |  |  |  |  |  |  |  |  |  |  |  |  |  |  |  |  |  |  |  |  |
| 8200CCG965 |  | Setup & Install Four Prebored H-piles (adjacent to Existing B17) |  | 12d | 2011-04-18 A | 2011-05-07 A | 8200DSG425, 8200MTG300, 8200CCE450 SS | 100% | 2011-08-31 | 2011-09-15 |  |  |  | Cal 1 |  | JMB | CC G | BOX FS1 | FS1 | G | RRIW | 820_AB |  |  |  | 11.26A | C020 |  |  |  | C1 |  |  |
| 8200CCG946 |  | Area 39.1 Tree Transplant by 801 Designated Contractor | milestone | 0d | 2011-05-06 A | 2011-05-06 A | 8200CCG965 | 100% |  |  |  |  | finish on or after 2010-10-11 | Cal 3 |  | JMB | CC G | BOX FS1 | FS1 | G | RRIW | 820_AB |  |  |  | 11.26A | C020 | 820 | 1 |  |  |  |  |
| 8200CCG950 |  | Soft Excavation to S1 (~+4.5mPD) |  | 4d | 2011-05-28 A | 2011-06-02 A |  | 100% | 2011-10-18 | 2011-10-21 |  |  |  | Cal 1 |  | JMB | CC G | BOX FS1 | FS1 | G | RRIW | 820_AB |  |  |  | 11.26A | C020 |  |  |  | C1 |  |  |
| 8200CCG955 |  | Soft Excavation & Expose Culvert FS1(~-2.0mPD) |  | 11d | 2011-06-02 A | 2011-07-02 A | 8200CCG950 | 100% | 2011-08-31 | 2011-09-14 |  |  |  | Cal 1 |  | JMB | CC G | BOX FS1 | FS1 | G | RRIW | 820_AB |  |  |  | 11.26A | C020 |  |  |  | C1 |  |  |
| 8200CCG960 |  | Cast in-situ RC Wall to Support Existing Ground (adjacent B14 & B19) |  | 5d | 2011-06-14 A | 2011-06-22 A | 8200CCE405, 8200CCG955 | 100% | 2011-08-31 | 2011-09-05 |  |  |  | Cal 1 | Other Skill Labour (Civil) [240 h]; Carpenter [240 h] | JMB | CC G | BOX FS1 | FS1 | G | RRIW | 820_AB |  |  |  | 11.26A | C020 |  |  |  | C1 |  |  |
| 8200CCG970 |  | Soft Excavation to 2m underneath Culvert |  | 10d | 2011-07-07 A | 2011-07-14 A | 8200CCG960, 8200CCG965 | 100% | 2011-09-06 | 2011-09-19 |  |  |  | Cal 1 |  | JMB | CC G | BOX FS1 | FS1 | G | RRIW | 820_AB |  |  |  | 11.26A | C020 |  |  |  | C1 |  |  |
| 8200CCG975 |  | Installation of Corbel Beams either Side of Culvert |  | 6d | 2011-07-15 A | 2011-07-24 A | 8200CCG970 | 100% | 2011-08-31 | 2011-09-06 |  |  |  | Cal 1 | Other Skill Labour (Civil) [288 h]; Plant Operator [48 h]; Mobile Crane [6 h]; Carpenter [288 h] | JMB | CC G | BOX FS1 | FS1 | G | RRIW | 820_AB |  |  |  | 11.26A | C020 |  |  |  | C1 |  |  |
| 8200CCG987 |  | Excavation to foundation level for B19 |  | 88d | 2011-07-15 A | 2011-11-04 A | 8200CCG985 | 100% | 2011-08-31 | 2011-12-16 |  |  |  | Cal 1 | Other Skill Labour (Civil) [4224 h] | JMB | CC G | BOX FS1 | FS1 | G | RRIW | 820_AB |  |  |  | 11.26A | C020 | 820 | 1 |  | C1 |  |  |
| 8200CCG990 |  | Excavation to foundation level for B14 |  | 92d | 2011-07-15 A | 2011-11-09 A | 8200CCG987 | 100% | 2012-02-17 | 2012-06-16 |  |  |  | Cal 1 | Other Skill Labour (Civil) [4416 h] | JMB | CC G | BOX FS1 | FS1 | G | RRIW | 820_AB |  |  |  | 11.26A | C020 |  |  |  | C1 |  |  |
| 8200CCG992 |  | Barettes Breaking (B15-B18) |  | 86d | 2011-07-15 A | 2011-11-02 A | 8200y1000 FF | 100% | 2011-08-31 | 2011-12-14 |  |  |  | Cal 1 | Pile Removal rig [86]; Pile Removal [4 Nos]; Plant Operator [688 h] | JMB | CC G | BOX FS1 | FS1 | G | RRIW | 820_AB |  |  |  | 11.26A | C020 |  |  |  | C1 |  |  |
| 8200CCG980 |  | Steel Beam Installation underneath Corbel Beams & Connect to H-pile |  | 6d | 2011-07-25 A | 2011-07-29 A | 8200CCG975 | 100% | 2011-08-31 | 2011-09-06 |  |  |  | Cal 1 | Other Skill Labour (Civil) [576 h]; Plant Operator [48 h]; Mobile Crane [6 h] | JMB | CC G | BOX FS1 | FS1 | G | RRIW | 820_AB |  |  |  | 11.26A | C020 |  |  |  | C1 |  |  |
| 8200CCG985 |  | Loading Transfer with Jacks |  | 1d | 2011-07-30 A | 2011-08-02 A | 8200y1000 FF, 8200CCG980 | 100% | 2011-08-31 | 2011-08-31 |  |  |  | Cal 1 |  | JMB | CC G | BOX FS1 | FS1 | G | RRIW | 820_AB |  |  |  | 11.26A | C020 |  |  |  | C1 |  |  |
| 8200CCG994 |  | Install Lagging Wall (at West & East D-wall) |  | 58d | 2011-08-17 A | 2011-11-11 A | 8200y1000 FF, 8200CCG987 SS+12d | 100% | 2011-08-31 | 2011-11-11 |  |  |  | Cal 1 | Carpenter [2784 h] | JMB | CC G | BOX FS1 | FS1 | G | RRIW | 820_AB |  |  |  | 11.26A | C020 |  |  |  | C1 |  |  |
| 8200CCG995 |  | Backfilling, Compaction & Testing |  | 21d | 2015-07-11 | 2015-08-05 | 8200CCG990, 8200CCG994, 8200CCD595 SS |  |  |  | 85d | 0d |  | Cal 1 | Other Skill Labour (Civil) [336 h]; Plant Operator [168 h]; Backhoe [168 h] | JMB | CC G | BOX FS1 | FS1 | G | RRIW | 820_AB |  |  |  | 11.26A | C020 |  |  |  |  | 0.6m/d | 48820+6600=55420m3, 20.9mD |
| 8200CCG998 |  | Disconnected Steel H-pile inside Tunnel Box |  | 6d | 2015-08-06 | 2015-08-13 | 8200CCG995 |  |  |  | 85d | 0d |  | Cal 1 | Other Skill Labour (Civil) [192 h] | JMB | CC G | BOX FS1 | FS1 | G | RRIW | 820_AB |  |  |  | 11.26A | C020 |  |  |  |  |  |  |

| ID | WBS | Activity | Type | Duration | Start | Finish | Predecessors | Complete | Remaining | Planned start | Planned finish | Total float | Free float | Constraint | Calendar | Responsible by | LEVEL 1 | LEVEL 2 | LEVEL 3 | Cost Centre | Works Area | 820_As-built | SUMMARY | Contracts | Priority A | Sum1 | Phases of Works | Responsible (bm makes Global) |
| --- | --- | --- | --- | --- | --- | --- | --- | --- | --- | --- | --- | --- | --- | --- | --- | --- | --- | --- | --- | --- | --- | --- | --- | --- | --- | --- | --- | --- |
|  | 50 | **Completion** |  |  | 2015-08-14 | 2015-10-10 |  |  |  |  |  |  |  |  |  |  |  |  |  |  |  |  |  |  |  |  |  |  |
| 8200CCG999a |  | Prepare & Submit Draft As-built Drawings |  | 24d | 2015-08-14 | 2015-09-10 | 8200CCG998 |  |  |  |  | 88d | 0d |  | Cal 3 | JMB | CC G | BOX FS1 | O&M AsB | G | 11.26A | 820_AB |  |  |  |  |  |  |
| 8200CCG999b |  | Prepare & Submit As-built Drawings |  | 24d | 2015-09-11 | 2015-10-10 | 8200CCG999a |  |  |  |  | 88d |  |  | Cal 3 | JMB | CC G | BOX FS1 | O&M AsB | G | 11.26A | 820_AB |  |  |  |  |  |  |
|  | CH | **Cost Centre H - Piling Works to Footbridges** |  |  | 2010-06-03 | 2015-11-23 |  |  |  |  |  |  |  |  |  |  |  |  |  |  |  |  |  |  |  |  |  |  |
|  | 10 | **IPS Milestones** |  |  | 2010-11-07 | 2015-09-24 |  |  |  |  |  |  |  |  |  |  |  |  |  |  |  |  |  |  |  |  |  |  |
|  | 10 | **General** |  |  | 2010-11-07 | 2015-09-24 |  |  |  |  |  |  |  |  |  |  |  |  |  |  |  |  |  |  |  |  |  |  |
| 8200MSH01 |  | Obtain SLG of TTMS for Footbridge Piling Start | milestone | 0d | 2010-11-07 A | 2010-11-07 A | 8200TMH115 | 100% |  | 2011-02-28 | 2011-02-28 |  |  | finish on or after 2010-11-07 |  |  | CC H | MILESTO | o | H | 11.21 |  | A | 820 |  |  |  |  |
| 8200MSH02 |  | Complete 9% of Piles | milestone | 0d | 2012-10-27 A | 2012-10-27 A | 8200CCH135 SF+35d | 100% |  | 2012-11-30 | 2012-11-30 |  |  | finish on or after 2012-08-05 |  |  | CC H | MILESTO | o | H | 11.21 |  | A | 820 |  |  |  |  |
| 8200MSH03 |  | Complete 60% of Piles | milestone | 0d | 2013-05-18 A | 2013-05-18 A | 8200CCH395 SF+74d, 8200CCH135, 8200CCH435 | 100% |  |  |  |  |  | finish on or after 2012-12-30 |  |  | CC H | MILESTO | o | H | 11.21 |  | A | 820 |  |  |  |  |
| 8200MSH05 |  | Complete 100% Piles except Pile cap 28 | milestone | 0d | 2015-06-26 | 2015-06-26 | 8200CCH485, 8200CCH395, 8200CCH435, 8200CCH455, 8200CCH135 |  |  |  |  | 340d | 319d | finish on or after 2014-01-13 |  |  | CC H | MILESTO | o | H | 11.21 |  | A | 820 |  |  |  |  |
| 8200MSH04 |  | Complete 70% of Piles | milestone | 0d | 2015-07-27 | 2015-07-27 | 8200CCH475 SF+33d, 8200CCH135, 8200CCH395, 8200CCH435 |  |  |  |  | 309d | 288d | finish on or after 2013-10-26 |  |  | CC H | MILESTO | o | H | 11.21 |  | A | 820 |  |  |  |  |
| 8200MSH06 |  | Complete All Works | milestone | 0d | 2015-09-24 | 2015-09-24 | 8200CCH435, 8200CCH455, 8200CCH475, 8200CCH135, 8200CCH395, 8200CCH485 |  |  |  |  | 250d | 229d | finish on or after 2014-03-14 |  |  | CC H | MILESTO | o | H | 11.21 |  | A | 820 |  |  |  |  |
|  | 20 | **Construction** |  |  | 2010-06-03 | 2015-11-23 |  |  |  |  |  |  |  |  |  |  |  |  |  |  |  |  |  |  |  |  |  |  |
| 8200y0730 |  | Footbridge No.1 (Hing Wai St. West) | level of effort | 373d | 2012-05-02 A | 2013-03-16 A | 8200CCH115 SS | 100% |  | 2012-08-31 | 2013-09-07 |  |  |  |  |  |  |  |  | H | 11.21 | 820_AB |  |  | 4 | S1 | C040 |  |
| 8200y0740 |  | Footbridge No.2 (Tonkin St. West) (2 out of 17 nos.) | level of effort | 155d | 2012-05-14 A | 2012-12-24 A | 8200CCH402 SS | 100% |  | 2012-09-12 | 2013-02-13 |  |  |  |  |  |  |  |  | H | 11.21 | 820_AB |  |  | 4 | S1 | C040 |  |
| 8200y0750 |  | Footbridge No.3 (Yen Chow St. West) | level of effort | 220d | 2012-11-12 A | 2015-09-24 | 8200CCH438 SS | 47% | 117d | 2013-05-06 | 2013-12-11 | -199d | 0d |  |  |  |  |  |  | H | 11.21 | 820_AB |  |  | 4 | S1 | C040 |  |
|  | 10 | **Method Statement Submission and Approval** |  |  | 2011-03-04 | 2012-08-11 |  |  |  |  |  |  |  |  |  |  |  |  |  |  |  |  |  |  |  |  |  |  |
| 8200MTH100 |  | MS Preparation |  | 23d | 2011-03-04 A | 2011-06-16 A | 8200KD1020 FS+100d | 100% |  | 2011-02-28 | 2011-03-25 |  |  |  | Cal 1 | MiC | CC H | CONSTRU | MS PREP | H | 11.21 | 820_AB | 1 | 820 |  |  | C010 | ARo |
| 8200MTH105 |  | MS Submission to CEDD | milestone | 0d | 2011-06-16 A | 2011-06-16 A | 8200MTH100 | 100% |  | 2011-03-28 | 2011-03-28 |  |  |  | Cal 3 | MiC | CC H | CONSTRU | MS PREP | H | 11.21 | 820_AB | 1 | 820 |  |  | C010 | ARo |
| 8200MTH110 |  | MS Comment by CEDD / Alt. Design Review with CEDD |  | 32d | 2011-06-17 A | 2012-06-15 A | 8200MTH105 | 100% |  | 2011-03-29 | 2011-04-29 |  |  |  |  | MiC | CC H | CONSTRU | MS PREP | H | 11.21 | 820_AB | 1 | 820 |  |  | C010 | ARo |
| 8200MTH115 |  | MS Re-submission Preparation |  | 25d | 2012-06-16 A | 2012-07-14 A | 8200MTH110, 8200MTH105 | 100% |  | 2012-11-08 | 2012-12-06 |  |  |  | Cal 1 | MiC | CC H | CONSTRU | MS PREP | H | 11.21 | 820_AB | 1 | 820 |  |  | C010 | ARo |
| 8200MTH120 |  | MS Submission to CEDD | milestone | 0d | 2012-07-16 A | 2012-07-16 A | 8200MTH115 | 100% |  | 2012-12-06 | 2012-12-06 |  |  |  | Cal 3 | MiC | CC H | CONSTRU | MS PREP | H | 11.21 | 820_AB | 1 | 820 |  |  | C010 | ARo |
| 8200MTH125 |  | MS Comment & Approval by CEDD |  | 28d | 2012-07-16 A | 2012-08-11 A | 8200MTH105, 8200MTH120 | 100% |  | 2012-12-07 | 2013-01-03 |  |  |  |  | MiC | CC H | CONSTRU | MS PREP | H | 11.21 | 820_AB | 1 | 820 |  |  | C010 | ARo |
| 8200MTH130 |  | Issue for Construction | milestone | 0d | 2012-08-11 A | 2012-08-11 A | 8200MTH125 FS+1d | 100% |  | 2013-01-04 | 2013-01-04 |  |  |  | Cal 3 | MiC | CC H | CONSTRU | MS PREP | H | 11.21 | 820_AB | 1 | 820 |  |  | C010 | ARo |

| ID | WBS | Activity | Type | Duration | Start | Finish | Predecessors | Complete | Planned start | Planned finish | Calendar | Resources | Responsible by | LEVEL 1 | LEVEL 2 | LEVEL 3 | SUMMARY | Contracts | Cost Centre | Works Area | Phases of Works | 820_As-built | QUANTITY |
| --- | --- | --- | --- | --- | --- | --- | --- | --- | --- | --- | --- | --- | --- | --- | --- | --- | --- | --- | --- | --- | --- | --- | --- |
|  | 20 | **TTM Scheme Submission & Approval** |  |  | 2010-06-03 | 2011-03-03 |  |  |  |  |  |  |  |  |  |  |  |  |  |  |  |  |  |
| 8200TMH100 |  | Prepare Temporary Traffic Management |  | 21d | 2010-06-03 A | 2010-06-30 A | 8200KD1020 | 100% | 2011-02-28 | 2011-03-23 | Cal 1 |  | HCh | CC H | CONSTRU | TTMS/AP | TTMS AP | 820 | H | 11.21 | C040 | 820_AB |  |
| 8200TMH125 |  | XP Application & Approval |  | 56d | 2010-06-09 A | 2010-08-03 A | 8200TMH105 SS+30d, 8200TMH115 FF+6d | 100% | 2011-06-02 | 2011-07-27 |  |  | HCh | CC H | CONSTRU | TTMS/AP |  | 820 | H | 11.21 | C040 | 820_AB |  |
| 8200TMH105 |  | TTM reviewed by SLG |  | 35d | 2010-07-02 A | 2010-08-05 A | 8200TMH100 | 100% | 2011-03-26 | 2011-04-29 |  |  | HCh | CC H | CONSTRU | TTMS/AP | TTMS AP | 820 | H | 11.21 | C040 | 820_AB |  |
| 8200TMH110 |  | Resubmit TTM |  | 30d | 2010-08-05 A | 2010-09-13 A | 8200TMH105 | 100% | 2011-02-28 | 2011-04-02 | Cal 1 |  | HCh | CC H | CONSTRU | TTMS/AP | TTMS AP | 820 | H | 11.21 | C040 | 820_AB |  |
| 8200TMH115 |  | TTM reviewed by SLG |  | 40d | 2010-08-05 A | 2010-09-13 A | 8200TMH110 | 100% | 2011-02-28 | 2011-04-08 |  |  | HCh | CC H | CONSTRU | TTMS/AP | TTMS AP | 820 | H | 11.21 | C040 | 820_AB |  |
| 8200TMH130 |  | Implement TTM | milestone | 0d | 2010-09-23 A | 2010-09-23 A | 8200TMH120, 8200TMH125 | 100% | 2011-08-22 | 2011-08-22 |  |  | HCh | CC H | CONSTRU | TTMS/AP | TTMS AP | 820 | H | 11.21 | C040 | 820_AB |  |
| 8200TMH120 |  | Notification to RMO |  | 161d | 2011-01-25 A | 2011-03-03 A | 8200TMH115 | 100% | 2011-02-28 | 2011-08-07 |  |  | HCh | CC H | CONSTRU | TTMS/AP | TTMS AP | 820 | H | 11.21 | C040 | 820_AB |  |
|  | 30 | **Footbridge No.1 (Hing Wai St. West)** |  |  | 2010-11-01 | 2013-03-16 |  |  |  |  |  |  |  |  |  |  |  |  |  |  |  |  |  |
| 8200CCH100 |  | Temp.Traffic Diversion |  | 7d | 2010-11-01 A | 2010-11-08 A | 8200TMH130 | 100% | 2011-02-28 | 2011-03-07 | Cal 1 | Other Skill Labour (Civil) [576 h] | INg | CC H | CONSTRU | o | 1 | 820 | H | 11.21 | C040 | 820_AB |  |
| 8200CCH105 |  | Temp. Pedestrians Barriers Erection |  | 7d | 2010-11-01 A | 2010-11-08 A | 8200CCH100 SS | 100% | 2011-02-28 | 2011-03-07 | Cal 1 | Plant Operator [48 h]; Mobile Crane [6 h]; Other Skill Labour (Civil) [288 h] | INg | CC H | CONSTRU | o | 1 | 820 | H | 11.21 | C040 | 820_AB |  |
| 8200CCH110 |  | Trial Trench & Record |  | 134d | 2011-02-25 A | 2011-03-16 A | 8200CCH100, 8200CCH105 | 100% | 2011-02-28 | 2011-08-23 | Cal 1 | Backhoe [12 h]; Plant Operator [96 h]; Other Skill Labour (Civil) [384 h] | INg | CC H | CONSTRU | o | 1 | 820 | H | 11.21 | C040 | 820_AB |  |
|  | 1 | **Area A PC6, PC7 & PC8** |  |  | 2012-05-02 | 2012-11-30 |  |  |  |  |  |  |  |  |  |  |  |  |  |  |  |  |  |
| 8200CCH115 |  | Trial Pit |  | 17d | 2012-05-02 A | 2012-05-23 A | 8200CCH110, 8200KD1020 FS+720d | 100% | 2012-08-31 | 2012-09-21 | Cal 1 | Other Skill Labour (Civil) [816 h] | INg | CC H | CONSTRU | FB 1 | 1 | 820 | H | 11.21 | C020 | 820_AB |  |
| 8200CCH120 |  | Utilities Diversion |  | 6d | 2012-05-23 A | 2012-05-30 A | 8200CCH115 | 100% | 2012-09-22 | 2012-09-28 | Cal 1 | Backhoe [6 h]; Other Skill Labour (Civil) [288 h]; Plant Operator [48 h] | INg | CC H | CONSTRU | FB 1 | 1 | 820 | H | 11.21 | C020 | 820_AB |  |
| 8200CCH125 |  | Confirmation of design by CEDD |  | 6d | 2012-05-30 A | 2012-08-11 A | 8200MTH130, 8200CCH115, 8200CCH120 | 100% | 2013-01-05 | 2013-01-11 | Cal 1 |  | INg | CC H | CONSTRU | FB 1 | 1 | 820 | H | 11.21 | C020 | 820_AB |  |
| 8200CCH130 |  | Implementation of TTMS & Site setup |  | 9d | 2012-06-06 A | 2012-07-07 A | 8200CCH125 FS-1d | 100% | 2013-01-11 | 2013-01-21 | Cal 1 | Other Skill Labour (Civil) [432 h] | INg | CC H | CONSTRU | FB 1 | 1 | 820 | H | 11.21 | C060 | 820_AB |  |
| 8200CCH135 |  | Piling works (18 nos. Pre-bored H-piles) |  | 70d | 2012-08-15 A | 2012-11-30 A | 8200y0730 FF, 8200MTH130, 8200CCH130 FS-1d | 100% | 2013-01-21 | 2013-04-22 | Cal 1 | nos. of Pile Installation [18 Nos]; Other Skill Labour (Civil) [3360 h]; Plant Operator [1120 h]; Mobile Crane [70 h]; Socketed H-pile Rig [70 h] | INg | CC H | CONSTRU | FB 1 | 1 | 820 | H | 11.21 | C060 | 820_AB | 7nos |
|  | 2 | **Area B PC4, PC5, PC10 & PC11** |  |  | 2012-12-14 | 2013-03-16 |  |  |  |  |  |  |  |  |  |  |  |  |  |  |  |  |  |
| 8200CCH355 |  | Trial Pit |  | 7d | 2012-12-14 A | 2012-12-21 A | 8200CCF696 FS-8d | 100% |  |  | Cal 1 | Other Skill Labour (Civil) [336 h] | INg | CC H | CONSTRU | FB 1 | 1 | 820 | H | 11.21 | C020 | 820_AB |  |
| 8200CCH365 |  | Utilities Diversion |  | 7d | 2012-12-22 A | 2013-01-02 A | 8200CCH355 FS-1d | 100% |  |  | Cal 1 | Other Skill Labour (Civil) [336 h]; Plant Operator [56 h]; Backhoe [7 h] | INg | CC H | CONSTRU | FB 1 | 1 | 820 | H | 11.21 | C020 | 820_AB |  |
| 8200CCH385 |  | Site setup |  | 3d | 2013-01-03 A | 2013-01-05 A | 8200CCH365, 8200CCH135 FS-1d | 100% |  |  | Cal 1 | Other Skill Labour (Civil) [144 h] | INg | CC H | CONSTRU | FB 1 | 1 | 820 | H | 11.21 | C060 | 820_AB |  |
| 8200CCH395 |  | Piling works (26 nos. Pre-bored H-piles) |  | 106d | 2013-01-07 A | 2013-03-16 A | 8200CCH385 FS-1d, 8200CCH135, 8200y0730 FF | 100% | 2013-01-07 | 2013-05-24 | Cal 1 | Other Skill Labour (Civil) [5088 h]; Plant Operator [1696 h]; Mobile Crane [106 h]; Socketed H-pile Rig [106 h]; nos. of Pile Installation [26 Nos] | INg | CC H | CONSTRU | FB 1 | 1 | 820 | H | 11.21 | C060 | 820_AB | 7nos |
|  | 40 | **Footbridge No.2 (Tonkin St. West)** |  |  | 2011-01-16 | 2015-06-26 |  |  |  |  |  |  |  |  |  |  |  |  |  |  |  |  |  |
| 8200CCH180 |  | Temp.Traffic Diversion |  | 8d | 2011-01-16 A | 2011-01-26 A | 8200TMH130 | 100% | 2011-02-28 | 2011-03-08 | Cal 1 | Other Skill Labour (Civil) [384 h] | INg | CC H | CONSTRU | o | 1 | 820 | H | 11.21 | C040 | 820_AB |  |
| 8200CCH185 |  | Temp. Pedestrians Barriers Erection |  | 7d | 2011-01-16 A | 2011-01-25 A | 8200CCH180 SS | 100% | 2011-02-28 | 2011-03-07 | Cal 1 | Mobile Crane [6 h]; Other Skill Labour (Civil) [288 h]; Plant Operator [48 h] | INg | CC H | CONSTRU | o | 1 | 820 | H | 11.21 | C040 | 820_AB |  |
| 8200CCH190 |  | Trial Trench & Record |  | 12d | 2011-04-04 A | 2011-04-16 A | 8200CCH180, 8200CCH185 | 100% | 2011-02-28 | 2011-03-12 | Cal 1 | Plant Operator [96 h]; Backhoe [12 h]; Other Skill Labour (Civil) [384 h] | INg | CC H | CONSTRU | o | 1 | 820 | H | 11.21 | C040 | 820_AB |  |

Notes:
- 8200CCH115: Basis & Assumptions: Last bored pile allocates about 137+595, assume 200m drive away =137+395 / >>link to U/T Excavation Ch137+550 SS16d or FS-21d and -12d / mobilization >>FS-21-12 >>FS-33
- 8200CCH130: Basis & Assumptions: 10d/pile & 4rigs
- 8200CCH355: Basis & Assumptions: Last bored pile allocates about 137+595, assume 200m drive away =137+395 / >>link to U/T Excavation Ch137+550 SS16d or FS-21d and -12d / mobilization >>FS-21-12 >>FS-33
- 8200CCH385: Basis & Assumptions: 10d/pile & 4rigs

| ID | WBS | Activity | Duration | Start | Finish | Predecessors | Complete | Remaining | Planned start | Planned finish | Total float | Free float | Constraint | Calendar | Resources | Responsible by | LEVEL 1 | LEVEL 2 | LEVEL 3 | SUMMARY | Contracts | Cost Centre | Works Area | Phases of Works | 820_As-built | QUANTITY |
| --- | --- | --- | --- | --- | --- | --- | --- | --- | --- | --- | --- | --- | --- | --- | --- | --- | --- | --- | --- | --- | --- | --- | --- | --- | --- | --- |
|  | 2 | **Area C PC22, PC23 & PC24** |  | 2012-05-14 | 2015-06-26 |  |  |  |  |  |  |  |  |  |  |  |  |  |  |  |  |  |  |  |  |  |
| 8200CCH402 |  | Implementation of TTMS & Site Clearance | 8d | 2012-05-14 A | 2012-05-23 A | 8200CCH115 SS+9d | 100% |  | 2012-09-12 | 2012-09-21 |  |  |  | Cal 1 | Other Skill Labour (Civil) [384 h] | INg | CC H | CONSTRU | FB 2 | 1 | 820 | H | 11.21 | C060 | 820_AB |  |
| 8200CCH405 |  | Trial Pit | 13d | 2012-05-23 A | 2012-06-06 A | 8200CCH402 FS-1d | 100% |  | 2012-09-21 | 2012-10-08 |  |  |  | Cal 1 | Other Skill Labour (Civil) [624 h] | INg | CC H | CONSTRU | FB 2 | 1 | 820 | H | 11.21 | C020 | 820_AB |  |
| 8200CCH415 |  | Utilities Diversion & Protection | 16d | 2012-06-06 A | 2012-06-27 A | 8200CCH405 FS-1d | 100% |  | 2012-10-08 | 2012-10-26 |  |  |  | Cal 1 | Other Skill Labour (Civil) [768 h]; Plant Operator [128 h]; Backhoe [16 h] | INg | CC H | CONSTRU | FB 2 | 1 | 820 | H | 11.21 | C020 | 820_AB |  |
| 8200CCH420 |  | Site formation | 12d | 2012-08-01 A | 2012-08-15 A | 8200CCH415 FS+4d | 100% |  | 2012-11-01 | 2012-11-14 |  |  |  | Cal 1 | Other Skill Labour (Civil) [576 h]; Plant Operator [96 h]; Backhoe [12 h] | INg | CC H | CONSTRU | FB 2 | 1 | 820 | H | 11.21 | C020 | 820_AB |  |
| 8200CCH425 |  | Site Setup | 6d | 2012-08-08 A | 2012-08-27 A | 8200CCH415, 8200CCH420 FS-1d | 100% |  | 2012-11-14 | 2012-11-20 |  |  |  | Cal 1 | Other Skill Labour (Civil) [288 h] | INg | CC H | CONSTRU | FB 2 | 1 | 820 | H | 11.21 | C060 | 820_AB |  |
| 8200CCH435 |  | FB2 - Piling works (2 nos. Pre-bored H-piles) | 12d | 2012-12-01 A | 2012-12-24 A | 8200CCH425 FS-1d, 8200y0740 FF | 100% |  | 2012-12-01 | 2012-12-14 |  |  |  | Cal 1 | nos. of Pile Installation [17 Nos]; Other Skill Labour (Civil) [3264 h]; Plant Operator [1088 h]; Mobile Crane [68 h]; Socketed H-pile Rig [68 h] | INg | CC H | CONSTRU | FB 2 | 1 | 820 | H | 11.21 | C060 | 820_AB | 7nos |
| 8200CCH485 |  | FB2 - Piling works (6 nos. Pre-bored H-piles) | 75d | 2015-02-09 A | 2015-06-26 | 8200CCH435 | 5% | 21d | 2015-02-09 | 2015-05-19 | -82d | 0d |  | Cal 1 | nos. of Pile Installation [17 Nos]; Other Skill Labour (Civil) [3264 h]; Plant Operator [1088 h]; Mobile Crane [68 h]; Socketed H-pile Rig [68 h] | INg | CC H | CONSTRU | FB 2 | 1 | 820 | H | 11.21 | C060 | 820_AB | 7nos |
|  | 50 | **Footbridge No.3 (Yen Chow St.West)** |  | 2010-12-13 | 2015-09-24 |  |  |  |  |  |  |  |  |  |  |  |  |  |  |  |  |  |  |  |  |  |
| 8200CCH250 |  | Temp.Traffic Diversion | 7d | 2010-12-13 A | 2010-12-20 A | 8200TMH130 | 100% |  | 2011-02-28 | 2011-03-07 |  |  |  | Cal 1 | Other Skill Labour (Civil) [576 h] | INg | CC H | CONSTRU | o | 1 | 820 | H | 11.21 | C040 | 820_AB |  |
| 8200CCH255 |  | Temp. Steel Decking & Barrier for Pedestrians | 7d | 2010-12-13 A | 2010-12-20 A | 8200CCH250 SS | 100% |  | 2011-02-28 | 2011-03-07 |  |  |  | Cal 1 | Other Skill Labour (Civil) [2880 h]; Plant Operator [288 h]; Mobile Crane [72 h] | INg | CC H | CONSTRU | o | 1 | 820 | H | 11.21 | C040 | 820_AB |  |
| 8200CCH260 |  | Trial Trench & Record | 96d | 2011-03-15 A | 2011-04-15 A | 8200CCH250, 8200CCH255 | 100% |  | 2011-02-28 | 2011-07-05 |  |  |  | Cal 1 | Plant Operator [96 h]; Backhoe [12 h]; Other Skill Labour (Civil) [384 h] | INg | CC H | CONSTRU | o | 1 | 820 | H | 11.21 | C040 | 820_AB |  |
|  | 2 | **Area D PC25, PC26 & PC27** |  | 2012-11-12 | 2013-05-27 |  |  |  |  |  |  |  |  |  |  |  |  |  |  |  |  |  |  |  |  |  |
| 8200CCH438 |  | Implementation of TTMS & Site Clearance | 6d | 2012-11-12 A | 2012-11-17 A | 8200CCH395 FS-24d | 100% |  |  |  |  |  |  | Cal 1 | Other Skill Labour (Civil) [288 h] | INg | CC H | CONSTRU | FB 3 | 1 | 820 | H | 11.21 | C060 | 820_AB |  |
| 8200CCH440 |  | Trial pit to expose utilities | 6d | 2012-11-19 A | 2013-03-02 A | 8200CCH438 FS-1d | 100% |  | 2012-11-19 | 2012-11-24 |  |  |  | Cal 1 | Other Skill Labour (Civil) [288 h] | INg | CC H | CONSTRU | FB 3 | 1 | 820 | H | 11.21 | C020 | 820_AB |  |
| 8200CCH448 |  | Implementation of TTMS | 36d | 2013-02-08 A | 2013-02-28 A | 8200CCH445 FS+5d | 100% |  | 2013-02-08 | 2013-03-25 |  |  |  | Cal 1 | Other Skill Labour (Civil) [1728 h]; Plant Operator [56 h]; Backhoe [36 h] | INg | CC H | CONSTRU | FB 3 | 1 | 820 | H | 11.21 | C020 | 820_AB |  |
| 8200CCH445 |  | Utilities Diversion & Protection | 14d | 2013-02-15 A | 2013-03-02 A | 8200CCH440 FS-1d | 100% |  |  |  |  |  |  | Cal 1 | Other Skill Labour (Civil) [672 h]; Plant Operator [112 h]; Backhoe [14 h] | INg | CC H | CONSTRU | FB 3 | 1 | 820 | H | 11.21 | C020 | 820_AB |  |
| 8200CCH450 |  | Site Setup | 7d | 2013-03-01 A | 2013-03-28 A | 8200CCH448 FS-1d, 8200CCH445 | 100% |  | 2013-03-01 | 2013-03-08 |  |  |  | Cal 1 | Other Skill Labour (Civil) [336 h] | INg | CC H | CONSTRU | FB 3 | 1 | 820 | H | 11.21 | C060 | 820_AB |  |
| 8200CCH455 |  | FB3a - Piling works (8 nos. Pre-bored H-piles) | 45d | 2013-04-02 A | 2013-05-27 A | 8200CCH450 FS-1d, 8200y0750 FF | 100% |  | 2013-04-02 | 2013-05-31 |  |  |  | Cal 1 | nos. of Pile Installation [8 Nos]; Other Skill Labour (Civil) [1392 h]; Plant Operator [464 h]; Mobile Crane [29 h]; Socketed H-pile Rig [29 h] | INg | CC H | CONSTRU | FB 3 | 1 | 820 | H | 11.21 | C060 | 820_AB | 7nos |
|  | 1 | **Area E PC28** |  | 2013-08-22 | 2015-09-24 |  |  |  |  |  |  |  |  |  |  |  |  |  |  |  |  |  |  |  |  |  |
| 8200CCH458 |  | Implementation of TTMS | 1d | 2013-08-22 A | 2013-08-22 A | 8200CCH448 FS-1d | 100% |  |  |  |  |  |  | Cal 1 |  | INg | CC H | CONSTRU | FB 3 | 1 | 820 | H | 11.21 | C060 | 820_AB |  |
| 8200CCH460 |  | Trial Pit | 13d | 2013-08-23 A | 2013-09-06 A | 8200CCH458 SS | 100% |  |  |  |  |  |  | Cal 1 | Other Skill Labour (Civil) [624 h] | INg | CC H | CONSTRU | FB 3 | 1 | 820 | H | 11.21 | C020 | 820_AB |  |
| 8200CCH465 |  | Utilities Diversion & Protection | 12d | 2013-09-07 A | 2013-09-24 A | 8200CCH460 FS-1d | 100% |  |  |  |  |  |  | Cal 1 | Other Skill Labour (Civil) [576 h]; Plant Operator [96 h]; Backhoe [12 h] | INg | CC H | CONSTRU | FB 3 | 1 | 820 | H | 11.21 | C020 | 820_AB |  |
| 8200CCH468 |  | Site formation [Pending for further instruction by MTR] | 6d | 2015-06-01 | 2015-06-06 | 8200CCH465 FS+4d |  |  |  |  | -353d | 0d | start on 2014-03-01 | Cal 1 | Other Skill Labour (Civil) [288 h]; Plant Operator [48 h]; Backhoe [6 h] | INg | CC H | CONSTRU | FB 3 | 1 | 820 | H | 11.21 | C020 | 820_AB |  |
| 8200CCH470 |  | Site Setup [Pending for further instruction by MTR] | 7d | 2015-06-06 | 2015-06-15 | 8200CCH468 FS-1d, 8200CCH465 |  |  |  |  | -152d | 0d |  | Cal 1 | Other Skill Labour (Civil) [336 h] | INg | CC H | CONSTRU | FB 3 | 1 | 820 | H | 11.21 | C060 | 820_AB |  |
| 8200CCH475 |  | FB3b - Piling works (18 nos. Pre-bored H-piles) [Pending for further instruction by MTR] | 80d | 2015-06-15 | 2015-09-24 | 8200y0750 FF, 8200CCH470 FS-1d, 8200TBC915 FS-1d, 8200TBC892 |  |  |  |  | -152d | 0d |  | Cal 1 | Other Skill Labour (Civil) [3360 h]; Plant Operator [1120 h]; Mobile Crane [70 h]; Socketed H-pile Rig [70 h] | INg | CC H | CONSTRU | FB 3 | 1 | 820 | H | 11.21 | C060 | 820_AB | 7nos |

Notes:
- 8200CCH402: Basis & Assumptions: 10d/pile & 4rigs
- 8200CCH405: Basis & Assumptions: Last bored pile allocates about 137+595, assume 200m drive away =137+395 / >>link to U/T Excavation Ch137+550 SS16d or FS-21d and -12d / mobilization >>FS-21-12 >>FS-33
- 8200CCH425: Basis & Assumptions: 10d/pile & 4rigs
- 8200CCH435: Problems Encountered: 2 out of 17 nos. of pile / completed. / Suspension due to a potential clash with 1400mm dia. / watermain.
- 8200CCH485: Problems Encountered: 2 out of 17 nos. of pile / completed. / Suspension due to a potential clash with 1400mm dia. / watermain.
- 8200CCH438: Basis & Assumptions: 10d/pile & 4rigs
- 8200CCH440: Basis & Assumptions: Last bored pile allocates about 137+595, assume 200m drive away =137+395 / >>link to U/T Excavation Ch137+550 SS16d or FS-21d and -12d / mobilization >>FS-21-12 >>FS-33
- 8200CCH450: Basis & Assumptions: 10d/pile & 4rigs
- 8200CCH458: Basis & Assumptions: 10d/pile & 4rigs
- 8200CCH460: Basis & Assumptions: Last bored pile allocates about 137+595, assume 200m drive away =137+395 / >>link to U/T Excavation Ch137+550 SS16d or FS-21d and -12d / mobilization >>FS-21-12 >>FS-33
- 8200CCH470: Basis & Assumptions: 10d/pile & 4rigs

| ID | WBS | Activity | Type | Duration | Start | Finish | Predecessors | Total float | Free float | Constraint | Calendar | Resources | Responsible by | LEVEL 1 | LEVEL 2 | LEVEL 3 | Cost Centre | 820_As-built | SUMMARY | Contracts | Phases of Works | Works Area | Classification of Works |
| --- | --- | --- | --- | --- | --- | --- | --- | --- | --- | --- | --- | --- | --- | --- | --- | --- | --- | --- | --- | --- | --- | --- | --- |
|  | 60 | **Completion** |  |  | 2015-09-25 | 2015-11-23 |  |  |  |  |  |  |  |  |  |  |  |  |  |  |  |  |  |
| 8200CCH340 |  | Prepare & Submit Draft As-built Drawings |  | 24d | 2015-09-25 | 2015-10-26 | 8200CCH475, 8200CCH135, 8200CCH485, 8200CCH395, 8200CCH455, 8200CCH435 | -163d | 0d |  | Cal 3 |  | INg | CC H | CONSTRU | O&M AsB | A | 820_AB |  |  |  |  |  |
| 8200CCH345 |  | Prepare & Submit As-built Drawings |  | 24d | 2015-10-27 | 2015-11-23 | 8200CCH340 | -163d | 0d |  | Cal 3 |  | INg | CC H | CONSTRU | O&M AsB | A | 820_AB |  |  |  |  |  |
|  | CI3 | **Cost Centre I3 (Option) HD's Entrustment Works - Carpark/Welfare Block** |  |  | 2015-05-31 | 2016-04-07 |  |  |  |  |  |  |  |  |  |  |  |  |  |  |  |  |  |
|  | 10 | **IPS Milestones** |  |  | 2015-11-18 | 2016-02-04 |  |  |  |  |  |  |  |  |  |  |  |  |  |  |  |  |  |
|  | 10 | **General** |  |  | 2015-11-18 | 2016-02-04 |  |  |  |  |  |  |  |  |  |  |  |  |  |  |  |  |  |
| 8200MSI3-1 |  | Complete 50% Carpark/Welfare Facilities Podium Foundation | milestone | 0d | 2015-11-18 | 2015-11-18 | 8200CC1310 SF+17d | -108d | 174d | finish on 2015-08-02 |  |  |  | CC I3 | MILESTO | o | I3 |  | A | 820 |  |  |  |
| 8200MSI3-3 |  | Complete All Works | milestone | 0d | 2016-02-04 | 2016-02-04 | 8200CC1314 | -102.75d | 96d | finish on 2015-10-25 |  |  |  | CC I3 | MILESTO | o | I3 |  | A | 820 |  |  |  |
|  | 20 | **Method Statement Submission and Approval** |  |  | 2015-06-30 | 2015-10-29 |  |  |  |  |  |  |  |  |  |  |  |  |  |  |  |  |  |
|  | 10 | **Method Statement Submission and Approval** |  |  | 2015-06-30 | 2015-10-29 |  |  |  |  |  |  |  |  |  |  |  |  |  |  |  |  |  |
| 8200MT1305 |  | MS Preparation |  | 25d | 2015-06-30 | 2015-07-31 | 8200CC1308 FS+30d | -84d | 0d |  | Cal 1 |  | MLa | CC I3 | MS PREP | MS PREP | I3 | 820_AB | 1 | 820 | C010 |  |  |
| 8200MT1310 |  | MS Submission to MTR | milestone | 0d | 2015-07-31 | 2015-07-31 | 8200MT1305 | -90d | 0d |  | Cal 3 |  | MLa | CC I3 | MS PREP | MS PREP | I3 | 820_AB | 1 | 820 | C010 |  |  |
| 8200MT1315 |  | MS Comment by MTR |  | 28d | 2015-08-01 | 2015-08-28 | 8200MT1310 | -109d | 0d |  |  |  | MLa | CC I3 | MS PREP | MS PREP | I3 | 820_AB | 1 | 820 | C010 |  |  |
| 8200MT1320 |  | MS Re-submission Preparation |  | 25d | 2015-08-29 | 2015-09-30 | 8200MT1315, 8200MT1310 | -85d | 0d |  | Cal 1 |  | MLa | CC I3 | MS PREP | MS PREP | I3 | 820_AB | 1 | 820 | C010 |  |  |
| 8200MT1325 |  | MS Submission to MTR | milestone | 0d | 2015-09-30 | 2015-09-30 | 8200MT1320 | -91d | 0d |  | Cal 3 |  | MLa | CC I3 | MS PREP | MS PREP | I3 | 820_AB | 1 | 820 | C010 |  |  |
| 8200MT1330 |  | MS Comment & Approval by MTR |  | 28d | 2015-10-01 | 2015-10-28 | 8200MT1325, 8200MT1310 | -110d | 0d |  |  |  | MLa | CC I3 | MS PREP | MS PREP | I3 | 820_AB | 1 | 820 | C010 |  |  |
| 8200MT1335 |  | Issue for Construction | milestone | 0d | 2015-10-29 | 2015-10-29 | 8200MT1330 FS+1d | -91d | 0d |  | Cal 3 |  | MLa | CC I3 | MS PREP | MS PREP | I3 | 820_AB | 1 | 820 | C010 |  |  |
|  | 30 | **Construction** |  |  | 2015-05-31 | 2016-04-07 |  |  |  |  |  |  |  |  |  |  |  |  |  |  |  |  |  |
|  | 10 | **Raft Footing Construction** |  |  | 2015-05-31 | 2016-02-04 |  |  |  |  |  |  |  |  |  |  |  |  |  |  |  |  |  |
| 8200CC1308 |  | Latest Exercising Date - Carpark/Welfare Block | milestone | 0d | 2015-05-31 | 2015-05-31 |  | -392d | 0d | start on 2014-05-04 |  |  |  | CC I3 | CONSTRU | RAFT FT | I3 | 820_AB | 1 | 820 |  | 11.26A | EPIW |
| 8200CC1310 |  | Raft Footing Construction |  | 36d | 2015-10-30 | 2015-12-10 | 8200CCD595 FS+6d, 8200CC1308, 8200CCE1412, 8200MT1335 | -86d | 0d |  | Cal 1 | Backhoe [288 h]; Other Skill Labour (Civil) [1152 h]; Plant Operator [288 h] |  | CC I3 | CONSTRU | RAFT FT | I3 | 820_AB | 1 | 820 | C020 | 11.26A | EPIW |
| 8200CC1312 |  | U/G Drainage /Utilities |  | 24d | 2015-12-11 | 2016-01-09 | 8200CC1310 | -86d | 0d |  | Cal 1 | Backhoe [192 h]; Other Skill Labour (Civil) [768 h]; Plant Operator [192 h] |  | CC I3 | CONSTRU | RAFT FT | I3 | 820_AB | 1 | 820 | C020 | 11.26A | EPIW |
| 8200CC1314 |  | Backfilling & Compaction (up to ground level +5.5mPD) |  | 22d | 2016-01-11 | 2016-02-04 | 8200CC1312 | -86d | 0d |  | Cal 1 | Backhoe [176 h]; Roller [18]; Other Skill Labour (Civil) [352 h]; Plant Operator [352 h] |  | CC I3 | CONSTRU | RAFT FT | I3 | 820_AB | 1 | 820 | C020 | 11.26A | EPIW |
|  | 40 | **Completion** |  |  | 2016-02-05 | 2016-04-07 |  |  |  |  |  |  |  |  |  |  |  |  |  |  |  |  |  |
| 8200CC1338 |  | Prepare & Submit Draft As-built Drawings |  | 24d | 2016-02-05 | 2016-03-07 | 8200CC1314 | -56d | 0d |  | Cal 3 |  |  | CC I3 | CONSTRU | O&M AsB | A | 820_AB |  |  |  |  |  |
| 8200CC1340 |  | Prepare & Submit As-built Drawings |  | 24d | 2016-03-08 | 2016-04-07 | 8200CC1338 | -56d | 0d |  | Cal 3 |  |  | CC I3 | CONSTRU | O&M AsB | A | 820_AB |  |  |  |  |  |

| ID | WBS | Activity | Type | Duration | Start | Finish | Predecessors | Complete | Total float | Free float | Constraint | Calendar | Resources | LEVEL 1 | LEVEL 2 | LEVEL 3 | SUMMARY | Contracts | Cost Centre | Phases of Works | 820_As-built | Works Area | QUANTITY | Classification of Works |
| --- | --- | --- | --- | --- | --- | --- | --- | --- | --- | --- | --- | --- | --- | --- | --- | --- | --- | --- | --- | --- | --- | --- | --- | --- |
|  | CI4 | **Cost Centre I4 (Option) HD's Entrustment Works - Podium Shop** |  |  | 2015-05-31 | 2016-02-25 |  |  |  |  |  |  |  |  |  |  |  |  |  |  |  |  |  |  |
|  | 10 | **IPS Milestones** |  |  | 2015-08-02 | 2015-12-24 |  |  |  |  |  |  |  |  |  |  |  |  |  |  |  |  |  |  |
|  | 10 | **General** |  |  | 2015-08-02 | 2015-12-24 |  |  |  |  |  |  |  |  |  |  |  |  |  |  |  |  |  |  |
| 8200MS14-1 |  | Complete 50% Podium Shop Foundation | milestone | 0d | 2015-08-02 | 2015-08-02 |  |  | 0d | 282d | finish on 2015-08-02 |  |  | CC I4 | MILESTO | o | A | 820 | I4 |  |  |  |  |  |
| 8200MS14-3 |  | Complete All Works | milestone | 0d | 2015-12-24 | 2015-12-24 | 8200CC1550 |  | -60d | 138d | finish on 2015-10-25 |  |  | CC I4 | MILESTO | o | A | 820 | I4 |  |  |  |  |  |
|  | 20 | **Method Statement Submission and Approval** |  |  | 2015-06-30 | 2015-10-29 |  |  |  |  |  |  |  |  |  |  |  |  |  |  |  |  |  |  |
|  | 10 | **Method Statement Submission and Approval** |  |  | 2015-06-30 | 2015-10-29 |  |  |  |  |  |  |  |  |  |  |  |  |  |  |  |  |  |  |
| 8200MT1408 |  | MS Preparation |  | 25d | 2015-06-30 | 2015-07-31 | 8200CC1408 FS+30d |  | -52d | 0d |  | Cal 1 |  | CC I4 | MS PREP | MS PREP | 1 | 820 | I4 | C010 | 820_AB |  |  |  |
| 8200MT1410 |  | MS Submission to HD/ICU | milestone | 0d | 2015-07-31 | 2015-07-31 | 8200MT1408 |  | -55d | 0d |  | Cal 3 |  | CC I4 | MS PREP | MS PREP | 1 | 820 | I4 | C010 | 820_AB |  |  |  |
| 8200MT1412 |  | MS Comment by HD/ICU |  | 28d | 2015-08-01 | 2015-08-28 | 8200MT1410 |  | -66d | 0d |  |  |  | CC I4 | MS PREP | MS PREP | 1 | 820 | I4 | C010 | 820_AB |  |  |  |
| 8200MT1414 |  | MS Re-submission Preparation |  | 25d | 2015-08-29 | 2015-09-30 | 8200MT1412, 8200MT1410 |  | -52d | 0d |  | Cal 1 |  | CC I4 | MS PREP | MS PREP | 1 | 820 | I4 | C010 | 820_AB |  |  |  |
| 8200MT1416 |  | MS Submission to HD/ICU | milestone | 0d | 2015-09-30 | 2015-09-30 | 8200MT1414 |  | -56d | 0d |  | Cal 3 |  | CC I4 | MS PREP | MS PREP | 1 | 820 | I4 | C010 | 820_AB |  |  |  |
| 8200MT1418 |  | MS Comment & Approval by HD/ICU |  | 28d | 2015-10-01 | 2015-10-28 | 8200MT1410, 8200MT1416 |  | -66d | 0d |  |  |  | CC I4 | MS PREP | MS PREP | 1 | 820 | I4 | C010 | 820_AB |  |  |  |
| 8200MT1420 |  | Issue for Construction | milestone | 0d | 2015-10-29 | 2015-10-29 | 8200MT1418 FS+1d |  | -54d | 0d |  | Cal 3 |  | CC I4 | MS PREP | MS PREP | 1 | 820 | I4 | C010 | 820_AB |  |  |  |
|  | 30 | **Construction** |  |  | 2015-05-31 | 2016-02-25 |  |  |  |  |  |  |  |  |  |  |  |  |  |  |  |  |  |  |
|  | 10 | **General** |  |  | 2015-05-31 | 2015-12-24 |  |  |  |  |  |  |  |  |  |  |  |  |  |  |  |  |  |  |
| 8200CC1408 |  | Latest Exercising Date - Podium Shop | milestone | 0d | 2015-05-31 | 2015-05-31 |  |  | -392d | 0d | start on 2014-05-04 |  |  | CC I4 | CONSTRU | o | A | 820 | I4 |  | 820_AB | 11.26A |  |  |
| 8200CC1409 |  | Foundation Construction |  | 18d | 2015-10-30 | 2015-11-19 | 8200MT1420, 8200CCE1412 FS+5d, 8200CC1408 SS, 8200CCD595 FS+10d, 8200AC1520, 8200AC1530, 8200AC1510 |  | -52d | 0d |  | Cal 1 | Backhoe [144 h]; Plant Operator [136 h]; Other Skill Labour (Civil) [576 h] | CC I4 | CONSTRU | o | 1 | 820 | I4 | C060 | 820_AB | 11.26A | 27mx8m | EPIW |
| 8200CC1410 |  | U/G Drainage /Utilities |  | 18d | 2015-11-20 | 2015-12-10 | 8200CC1409 |  | -52d | 0d |  | Cal 1 | Backhoe [144 h]; Plant Operator [136 h]; Other Skill Labour (Civil) [288 h] | CC I4 | CONSTRU | o | 1 | 820 | I4 | C060 | 820_AB | 11.26A | 27mx8m | EPIW |
| 8200CC1550 |  | Backfilling & Compaction (up to ground level +5.5mPD) |  | 12d | 2015-12-11 | 2015-12-24 | 8200CC1410 |  | -52d | 0d |  | Cal 1 | Backhoe [96 h]; Plant Operator [192 h]; Roller [12]; Other Skill Labour (Civil) [192 h] | CC I4 | CONSTRU | o | 1 | 820 | I4 | C060 | 820_AB | 11.26A | 27mx8m | EPIW |
|  | 20 | **Completion** |  |  | 2015-12-28 | 2016-02-25 |  |  |  |  |  |  |  |  |  |  |  |  |  |  |  |  |  |  |
| 8200CC1430 |  | Prepare & Submit Draft As-built Drawings |  | 24d | 2015-12-28 | 2016-01-25 | 8200CC1550 |  | -23d | 0d |  | Cal 3 |  | CC I4 | CONSTRU | O&M AsB |  |  | I4 | C080 | 820_AB | 11.26A |  | EPIW |
| 8200CC1440 |  | Prepare & Submit As-built Drawings |  | 24d | 2016-01-26 | 2016-02-25 | 8200CC1430 |  | -23d | 0d |  | Cal 3 |  | CC I4 | CONSTRU | O&M AsB |  |  | I4 | C080 | 820_AB | 11.26A |  | EPIW |
|  | CI5 | **Cost Centre I5 (Option) HD's Entrustment Works - Bored Piles to Elevated Walkway** |  |  | 2010-11-05 | 2015-06-05 |  |  |  |  |  |  |  |  |  |  |  |  |  |  |  |  |  |  |
|  | 10 | **IPS Milestones** |  |  | 2013-10-08 | 2013-10-24 |  |  |  |  |  |  |  |  |  |  |  |  |  |  |  |  |  |  |
|  | 10 | **General** |  |  | 2013-10-08 | 2013-10-24 |  |  |  |  |  |  |  |  |  |  |  |  |  |  |  |  |  |  |
| 8200MS151 |  | Complete 4 nos. of Bored Piles (4 of 5 piles) | milestone | 0d | 2013-10-08 A | 2013-10-08 A | 8200CC1516 | 100% |  |  | finish on or after 2014-08-17 |  |  | CC I5 | MILESTO | o | A | 820 | I5 |  |  | 11.27 |  | EPIW |
| 8200MS152 |  | Complete All Works | milestone | 0d | 2013-10-24 A | 2013-10-24 A |  | 100% |  |  | finish on or after 2014-10-12 |  |  | CC I5 | MILESTO | o | A | 820 | I5 |  |  | 11.27 |  | EPIW |

| ID | WBS | Activity | Type | Duration | Start | Finish | Predecessors | Complete | Remaining | Planned start | Planned finish | Total float | Free float | Calendar | Resources | Responsible by | LEVEL 1 | LEVEL 2 | LEVEL 3 | SUMMARY | Contracts | Cost Centre | Works Area | Phases of Works | Classification of Works | 820_As-built | QUANTITY | Priority A | Sum1 | TBM UT f | TBM UT s | Order | Responsible (bm makes Global) | Location of Works | Sub-locationof Works | Areas/ Rooms |
| --- | --- | --- | --- | --- | --- | --- | --- | --- | --- | --- | --- | --- | --- | --- | --- | --- | --- | --- | --- | --- | --- | --- | --- | --- | --- | --- | --- | --- | --- | --- | --- | --- | --- | --- | --- | --- |
|  | 20 | **Method Statement Submission and Approval** |  |  | 2013-05-06 | 2013-06-29 |  |  |  |  |  |  |  |  |  |  |  |  |  |  |  |  |  |  |  |  |  |  |  |  |  |  |  |  |  |  |
|  | 10 | **Method Statement Submission and Approval** |  |  | 2013-05-06 | 2013-06-29 |  |  |  |  |  |  |  |  |  |  |  |  |  |  |  |  |  |  |  |  |  |  |  |  |  |  |  |  |  |  |
| 8200MT1508 |  | MS Preparation |  | 24d | 2013-05-06 A | 2013-06-04 A | 8200KD1020 FS+600d | 100% |  | 2013-05-06 | 2013-06-05 |  |  | Cal 1 |  | MiC | CC I5 | MS PREP | MS PREP | 1 | 820 | I5 | 11.27 | C010 | EPIW | 820_AB |  |  |  |  |  |  |  |  |  |  |
| 8200MT1510 |  | MS Submission to HD/ICU | milestone | 0d | 2013-06-05 A | 2013-06-05 A | 8200MT1508 | 100% |  |  |  |  |  | Cal 3 |  | MiC | CC I5 | MS PREP | MS PREP | 1 | 820 | I5 | 11.27 | C010 | EPIW | 820_AB |  |  |  |  |  |  |  |  |  |  |
| 8200MT1512 |  | MS Comment by HD/ICU |  | 28d | 2013-06-06 A | 2013-06-13 A | 8200MT1510 | 100% |  | 2013-06-06 | 2013-07-03 |  |  |  |  | MiC | CC I5 | MS PREP | MS PREP | 1 | 820 | I5 | 11.27 | C010 | EPIW | 820_AB |  |  |  |  |  |  |  |  |  |  |
| 8200MT1514 |  | MS Re-submission Preparation |  | 25d | 2013-06-14 A | 2013-06-26 A | 8200MT1512, 8200MT1510 | 100% |  | 2013-06-14 | 2013-07-16 |  |  | Cal 1 |  | MiC | CC I5 | MS PREP | MS PREP | 1 | 820 | I5 | 11.27 | C010 | EPIW | 820_AB |  |  |  |  |  |  |  |  |  |  |
| 8200MT1516 |  | MS Submission to HD/ICU | milestone | 0d | 2013-06-27 A | 2013-06-27 A | 8200MT1514 | 100% |  |  |  |  |  | Cal 3 |  | MiC | CC I5 | MS PREP | MS PREP | 1 | 820 | I5 | 11.27 | C010 | EPIW | 820_AB |  |  |  |  |  |  |  |  |  |  |
| 8200MT1518 |  | MS Comment & Approval by HD/ICU |  | 28d | 2013-06-28 A | 2013-06-29 A | 8200MT1516, 8200MT1510 | 100% |  | 2013-06-28 | 2013-07-25 |  |  |  |  | MiC | CC I5 | MS PREP | MS PREP | 1 | 820 | I5 | 11.27 | C010 | EPIW | 820_AB |  |  |  |  |  |  |  |  |  |  |
| 8200MT1520 |  | Issue for Construction | milestone | 0d | 2013-06-29 A | 2013-06-29 A | 8200MT1518 FS+1d | 100% |  |  |  |  |  | Cal 3 |  | MiC | CC I5 | MS PREP | MS PREP | 1 | 820 | I5 | 11.27 | C010 | EPIW | 820_AB |  |  |  |  |  |  |  |  |  |  |
|  | 30 | **Construction** |  |  | 2010-11-05 | 2015-06-05 |  |  |  |  |  |  |  |  |  |  |  |  |  |  |  |  |  |  |  |  |  |  |  |  |  |  |  |  |  |  |
|  | 10 | **General** |  |  | 2010-11-05 | 2013-11-30 |  |  |  |  |  |  |  |  |  |  |  |  |  |  |  |  |  |  |  |  |  |  |  |  |  |  |  |  |  |  |
| 8200CC1508 |  | Latest Exercising Date - Bored Piles | milestone | 0d | 2010-11-05 A | 2010-11-05 A | 8200KD1020 FS+180d | 100% |  | 2011-02-28 | 2011-02-28 |  |  |  |  |  | CC I5 | CONSTRU | o | A | 820 | I5 | 11.27 |  | EPIW | 820_AB |  |  |  |  |  |  |  |  |  |  |
| 8200CC1509 |  | Diversion of existing drain |  | 24d | 2013-05-06 A | 2013-06-11 A | 8200MT1520 | 100% |  | 2013-05-06 | 2013-06-05 |  |  | Cal 1 | Other Skill Labour (Civil) [1152 h]; Mobile Crane [24 h]; Plant Operator [192 h] |  | CC I5 | CONSTRU | o | 1 | 820 | I5 | 11.27 | C060 | EPIW | 820_AB |  |  |  |  |  |  |  |  |  |  |
| 8200y0630 |  | Bored Piles & Pile Testing | level of effort | 186d | 2013-07-02 A | 2013-11-30 A | 8200CC1510 SS | 100% |  | 2013-10-28 | 2014-05-01 |  |  |  | Other Skill Labour (Civil); Drilling Rig |  | CC C | TBM631 | UT | 1 | 820 | I5 | 11.27 | C060 | EPIW | 820_AB | 20mL | 1 | S4 | 2013-03-20 | 2013-03-20 | 2 | INg | 2030 | TUNN | UT |
| 8200CC1510 |  | 1st no. Bored Pile P6 Construction |  | 24d | 2013-07-02 A | 2013-08-21 A | 8200MT1508, 8200CC1509, 8200MT1520, 8200CC1508, 8200CC1508 SS | 100% |  | 2013-07-02 | 2013-07-31 |  |  | Cal 1 | Bored Pile Rig [20 h]; Mobile Crane [20 h]; Plant Operator [320 h]; Other Skill Labour (Civil) [640 h]; nos. of Pile Installation [20 Nos] |  | CC I5 | CONSTRU | o | 1 | 820 | I5 | 11.27 | C060 | EPIW | 820_AB |  |  |  |  |  |  |  |  |  |  |
| 8200CC1512 |  | 2nd no. Bored Pile P3 Construction |  | 24d | 2013-07-24 A | 2013-09-05 A | 8200CC1510 | 100% |  | 2013-07-24 | 2013-08-22 |  |  | Cal 1 | Other Skill Labour (Civil) [640 h]; Plant Operator [320 h]; Mobile Crane [20 h]; Bored Pile Rig [20 h]; nos. of Pile Installation [20 Nos] |  | CC I5 | CONSTRU | o | 1 | 820 | I5 | 11.27 | C060 | EPIW | 820_AB |  |  |  |  |  |  |  |  |  |  |
| 8200CC1514 |  | 3rd no. Bored Pile P5 Construction |  | 24d | 2013-08-23 A | 2013-09-26 A | 8200CC1512 | 100% |  | 2013-08-23 | 2013-09-23 |  |  | Cal 1 | Bored Pile Rig [20 h]; nos. of Pile Installation [20 Nos]; Other Skill Labour (Civil) [640 h]; Plant Operator [320 h]; Mobile Crane [20 h] |  | CC I5 | CONSTRU | o | 1 | 820 | I5 | 11.27 | C060 | EPIW | 820_AB |  |  |  |  |  |  |  |  |  |  |
| 8200CC1516 |  | 4th no. Bored Pile P2 Construction |  | 24d | 2013-09-06 A | 2013-10-08 A | 8200CC1514 | 100% |  |  |  |  |  | Cal 1 | Plant Operator [320 h]; Mobile Crane [20 h]; Bored Pile Rig [20 h]; nos. of Pile Installation [20 Nos]; Other Skill Labour (Civil) [640 h] |  | CC I5 | CONSTRU | o | 1 | 820 | I5 | 11.27 | C060 | EPIW | 820_AB |  |  |  |  |  |  |  |  |  |  |
| 8200CC1540 |  | 5th no. Bored Pile P4 Construction |  | 24d | 2013-09-28 A | 2013-10-24 A | 8200CC1516 | 100% |  | 2013-09-28 | 2013-10-28 |  |  | Cal 1 | Plant Operator [320 h]; Mobile Crane [20 h]; Bored Pile Rig [20 h]; nos. of Pile Installation [20 Nos]; Other Skill Labour (Civil) [640 h] |  | CC I5 | CONSTRU | o | 1 | 820 | I5 | 11.27 | C060 | EPIW | 820_AB |  |  |  |  |  |  |  |  |  |  |
| 8200CC1522 |  | Pile Testing |  | 72d | 2013-10-28 A | 2013-11-30 A | 8200CC1512 FF+24d, 8200CC1516 FF+24d, 8200CC1510 FF+24d, 8200CC1514 FF+24d, 8200CC1540 FF+24d, 8200y0630 FF | 100% |  | 2013-07-02 | 2013-10-02 |  |  | Cal 1 |  |  | CC I5 | CONSTRU | o | 1 | 820 | I5 | 11.27 | C060 | EPIW | 820_AB |  |  |  |  |  |  |  |  |  |  |
|  | 20 | **Completion** |  |  | 2013-12-02 | 2015-06-05 |  |  |  |  |  |  |  |  |  |  |  |  |  |  |  |  |  |  |  |  |  |  |  |  |  |  |  |  |  |  |
| 8200CC1525 |  | Prepare & Submit Draft As-built Drawings |  | 24d | 2013-12-02 A | 2015-06-05 |  | 80% | 4.8d | 2013-12-02 | 2013-12-31 | 293.2d | 276.2d | Cal 3 |  |  | CC I5 | CONSTRU | O&M AsB |  |  | I5 |  |  |  | 820_AB |  |  |  |  |  |  |  |  |  |  |
| 8200CC1530 |  | Prepare & Submit As-built Drawings |  | 24d | 2013-12-02 A | 2015-06-05 | 8200CC1525 | 80% | 4.8d | 2013-12-02 | 2013-12-31 | -21.8d | 0d | Cal 3 |  |  | CC I5 | CONSTRU | O&M AsB |  |  | I5 |  |  |  | 820_AB |  |  |  |  |  |  |  |  |  |  |
|  | 2 | **Cost Centre J - Cut & Cover Tunnels At Hoi Ting Road Retrieval Shaft** |  |  | 2013-11-07 | 2015-08-06 |  |  |  |  |  |  |  |  |  |  |  |  |  |  |  |  |  |  |  |  |  |  |  |  |  |  |  |  |  |  |
| 8200CCE680 |  | Underground Drainage & Utilities |  | 60d | 2014-07-07 A | 2015-07-24 | 8200CCE675 SS+40d | 30% | 42d | 2014-07-07 | 2014-09-22 | 249d | 233d | Cal 1 | Other Skill Labour (Civil) [1920 h]; Plant Operator [960 h]; Backhoe [960 h] | JMB | CC E | VENT BU | EXT WKS | VB & CC | 820 | J | 11.23A |  | EPIW | 820_AB |  |  |  |  |  |  |  | 2050 | EXT |  |

Notes:
- 8200CC1522: Basis & Assumptions: assume compln of (PC6P1,3&5/PC7P1/8P1)

| ID | WBS | Activity | Type | Duration | Start | Finish | Predecessors | Complete | Planned start | Planned finish | Total float | Free float | Constraint | Calendar | Resources | LEVEL 1 | LEVEL 2 | LEVEL 3 | SUMMARY | Contracts | Cost Centre | 820_As-built |
| --- | --- | --- | --- | --- | --- | --- | --- | --- | --- | --- | --- | --- | --- | --- | --- | --- | --- | --- | --- | --- | --- | --- |
|  | 2 | **IPS Milestones** |  |  | 2014-04-01 | 2015-08-06 |  |  |  |  |  |  |  |  |  |  |  |  |  |  |  |  |
| 8200CCJ01 |  | Complete Roof slab of Down track cut and cover tunnel | milestone | 0d | 2014-04-01 A | 2014-04-01 A | 8200WKT200 | 100% |  |  |  |  | finish on 2014-05-04 |  |  | CCJ | MILESTO | o | A | 820 | J |  |
| 8200CCJ02 |  | Achieve Degree 1 completion for the Down track cut and cover tunnel | milestone | 0d | 2014-05-15 A | 2014-05-15 A | 8200WKT230 | 100% |  |  |  |  | finish on 2014-06-15 |  |  | CCJ | MILESTO | o | A | 820 | J |  |
| 8200CCJ03 |  | Complete Roof slab of Up track cut and cover tunnel | milestone | 0d | 2015-02-05 A | 2015-02-05 A |  | 100% |  |  |  |  | finish on 2014-12-14 |  |  | CCJ | MILESTO | o | A | 820 | J |  |
| 8200CCJ04 |  | Achieve Degree 1 completion for the Up track cut and cover tunnel | milestone | 0d | 2015-03-13 A | 2015-03-13 A | 8200WKT440 | 100% |  |  |  |  | finish on or before 2015-02-22 |  |  | CCJ | MILESTO | o | A | 820 | J |  |
| 8200CCJ05 |  | Complete backfill and reinstatement at Works Areas 12.2 and 13.48 | milestone | 0d | 2015-08-06 | 2015-08-06 | 8200WKT520 |  |  |  | 299d | 278d | finish on or after 2015-05-10 |  |  | CCJ | MILESTO | o | A | 820 | J |  |
|  | 1 | **Construction** |  |  | 2013-11-07 | 2015-08-06 |  |  |  |  |  |  |  |  |  |  |  |  |  |  |  |  |
|  | 1 | **Down Track Cut & Cover Tunnel** |  |  | 2013-11-07 | 2014-05-15 |  |  |  |  |  |  |  |  |  |  |  |  |  |  |  |  |
| 8200WKT110 |  | Mobilization and Site Preparation works |  | 21d | 2013-11-07 A | 2013-11-21 A | 8200WKT100 FS+6d | 100% | 2013-11-07 | 2013-11-30 |  |  |  | Cal 1 | Other Skill Labour (Civil) [168 h]; Plant Operator [168 h]; Backhoe [168 h] | CCJ | CONSTRU |  |  | 811A | J | 820_AB |
| 8200WKT120 |  | Clear Backfilled B5 and Trim to Formation Level |  | 10d | 2013-11-07 A | 2013-11-21 A | 8200WKT100 FS+6d, 8200WKT110 | 100% | 2013-11-07 | 2013-11-18 |  |  |  | Cal 1 | Other Skill Labour (Civil) [80 h]; Plant Operator [80 h]; Backhoe [80 h] | CCJ | CONSTRU |  |  | 811A | J | 820_AB |
| 8200WKT100 |  | TBM (S630-1) Backup Removal D/T | milestone | 0d | 2013-11-10 A | 2013-11-10 A | 8200TBC575 FF | 100% |  |  |  |  |  |  |  | CCJ | CONSTRU |  |  |  | J | 820_AB |
| 8200WKT130 |  | Drill holes for mass infill wall |  | 5d | 2013-11-18 A | 2013-11-22 A | 8200WKT120 | 100% |  |  |  |  | mandatory start 2013-11-18 | Cal 1 | Other Skill Labour (Civil) [40 h] | CCJ | CONSTRU |  |  |  | J | 820_AB |
| 8200WKT140 |  | Construction of Mass Infill Wall |  | 18d | 2013-11-23 A | 2013-12-18 A | 8200WKT130 | 100% | 2013-11-23 | 2013-12-13 |  |  |  | Cal 1 | Other Skill Labour (Civil) [144 h] | CCJ | CONSTRU |  |  |  | J | 820_AB |
| 8200WKT150 |  | Waterproofing to Interface of TBM Tunnel & 811A |  | 3d | 2013-12-19 A | 2013-12-30 A | 8200WKT140 | 100% | 2013-12-19 | 2013-12-21 |  |  |  | Cal 1 | Other Skill Labour (Civil) [96 h] | CCJ | CONSTRU |  |  |  | J | 820_AB |
| 8200WKT160 |  | Construction of Base Slab |  | 16d | 2013-12-24 A | 2014-01-24 A | 8200WKT150 | 100% | 2013-12-24 | 2014-01-14 |  |  |  | Cal 1 | Other Skill Labour (Civil) [512 h] | CCJ | CONSTRU |  |  |  | J | 820_AB |
| 8200WKT170 |  | Curing, CJ preparation & Dismantle base slab formwork |  | 5d | 2014-01-25 A | 2014-01-30 A | 8200WKT150, 8200WKT160 | 100% |  |  |  |  |  | Cal 1 | Other Skill Labour (Civil) [160 h] | CCJ | CONSTRU |  |  |  | J | 820_AB |
| 8200WKT180 |  | Construction of Lower Portion Wall |  | 7d | 2014-01-25 A | 2014-03-06 A | 8200WKT170 SS+3d | 100% | 2014-01-25 | 2014-02-05 |  |  |  | Cal 1 | Other Skill Labour (Civil) [224 h] | CCJ | CONSTRU |  |  |  | J | 820_AB |
| 8200WKT190 |  | Curing, CJ preparation & Dismantle wall formwork |  | 5d | 2014-03-07 A | 2014-03-12 A | 8200WKT180 | 100% |  |  |  |  |  | Cal 1 | Other Skill Labour (Civil) [160 h] | CCJ | CONSTRU |  |  |  | J | 820_AB |
| 8200WKT195 |  | Construction of Upper Portion Wall & Roof Slab |  | 20d | 2014-03-07 A | 2014-04-01 A | 8200WKT190 SS+4d | 100% | 2014-03-07 | 2014-03-29 |  |  |  | Cal 1 | Other Skill Labour (Civil) [640 h] | CCJ | CONSTRU |  |  |  | J | 820_AB |
| 8200WKT220 |  | Construction of Walkway |  | 15d | 2014-04-02 A | 2014-04-30 A | 8200WKT210 | 100% | 2014-05-02 | 2014-05-22 |  |  |  | Cal 1 | Other Skill Labour (Civil) [480 h] | CCJ | CONSTRU |  |  |  | J | 820_AB |
| 8200WKT200 |  | Curing for Upper Portion Wall & Roof Slab |  | 10d | 2014-04-02 A | 2014-04-08 A | 8200WKT195 | 100% | 2014-04-02 | 2014-04-15 |  |  |  | Cal 1 | Other Skill Labour (Civil) [320 h] | CCJ | CONSTRU |  |  |  | J | 820_AB |
| 8200WKT210 |  | Dismantle falsework and formwork |  | 4d | 2014-04-09 A | 2014-04-14 A | 8200WKT200 | 100% |  |  |  |  |  | Cal 1 | Other Skill Labour (Civil) [128 h] | CCJ | CONSTRU |  |  |  | J | 820_AB |
| 8200WKT230 |  | 811A C&C D/T- Degree 1 works |  | 15d | 2014-04-09 A | 2014-05-15 A | 8200WKT220 | 100% | 2014-04-09 | 2014-04-30 |  |  |  | Cal 1 | Other Skill Labour (Civil) [480 h] | CCJ | CONSTRU |  |  |  | J | 820_AB |
|  | 2 | **Up Track Cut & Cover Tunnel** |  |  | 2014-07-02 | 2015-03-13 |  |  |  |  |  |  |  |  |  |  |  |  |  |  |  |  |
| 8200WKT320 |  | Clear Backfilled B5 and Trim to Formation Level |  | 6d | 2014-07-02 A | 2014-07-12 A | 8200WKT310 | 100% | 2014-07-02 | 2014-07-08 |  |  |  | Cal 1 | Backhoe [48 h]; Other Skill Labour (Civil) [96 h]; Plant Operator [48 h] | CCJ | CONSTRU |  |  |  | J | 820_AB |
| 8200WKT300 |  | TBM (S630-1) & Backup Removal U/T | milestone | 0d | 2014-11-19 A | 2014-11-19 A | 8200TBC975 FF | 100% |  |  |  |  |  |  |  | CCJ | CONSTRU |  |  |  | J | 820_AB |
| 8200WKT310 |  | Re-mobilization and Site Preparation works |  | 6d | 2014-11-20 A | 2014-11-26 A | 8200WKT300 | 100% |  |  |  |  |  | Cal 1 | Other Skill Labour (Civil) [96 h]; Plant Operator [48 h]; Backhoe [48 h] | CCJ | CONSTRU |  |  |  | J | 820_AB |
| 8200WKT330 |  | Drill holes for mass infill wall |  | 5d | 2014-11-27 A | 2014-12-02 A | 8200WKT320, 8200WKT310 | 100% |  |  |  |  |  | Cal 1 | Other Skill Labour (Civil) [160 h] | CCJ | CONSTRU |  |  |  | J | 820_AB |
| 8200WKT340 |  | Construction of Mass Infill Wall |  | 12d | 2014-12-03 A | 2014-12-16 A | 8200WKT330 | 100% | 2015-01-03 | 2015-01-16 |  |  |  | Cal 1 | Other Skill Labour (Civil) [384 h] | CCJ | CONSTRU |  |  |  | J | 820_AB |
| 8200WKT350 |  | Waterproofing to Interface of TBM Tunnel & 811A |  | 3d | 2014-12-17 A | 2014-12-19 A | 8200WKT340 | 100% |  |  |  |  | start on or after 2015-01-16 | Cal 1 | Other Skill Labour (Civil) [96 h] | CCJ | CONSTRU |  |  |  | J | 820_AB |
| 8200WKT360 |  | Construction of Base Slab |  | 10d | 2014-12-20 A | 2015-01-03 A | 8200WKT340, 8200WKT350 | 100% |  |  |  |  |  | Cal 1 | Other Skill Labour (Civil) [320 h] | CCJ | CONSTRU |  |  |  | J | 820_AB |
| 8200WKT370 |  | Curing, CJ preparation & Dismantle base slab formwork |  | 5d | 2015-01-04 A | 2015-01-08 A | 8200WKT360 | 100% | 2015-01-05 | 2015-01-09 |  |  |  | Cal 1 | Other Skill Labour (Civil) [160 h] | CCJ | CONSTRU |  |  |  | J | 820_AB |
| 8200WKT380 |  | Construction of Lower Portion Wall |  | 6d | 2015-01-09 A | 2015-01-15 A | 8200WKT370 SS | 100% |  |  |  |  |  | Cal 1 | Other Skill Labour (Civil) [192 h] | CCJ | CONSTRU |  |  |  | J | 820_AB |
| 8200WKT390 |  | Curing, CJ preparation & Dismantle wall formwork |  | 5d | 2015-01-16 A | 2015-01-21 A | 8200WKT380 | 100% |  |  |  |  |  | Cal 1 | Other Skill Labour (Civil) [160 h] | CCJ | CONSTRU |  |  |  | J | 820_AB |
| 8200WKT400 |  | Construction of Upper Portion Wall & Roof Slab |  | 20d | 2015-01-22 A | 2015-01-30 A | 8200WKT390 SS, 8200WKT380 | 100% | 2015-01-22 | 2015-02-13 |  |  |  | Cal 1 | Other Skill Labour (Civil) [640 h] | CCJ | CONSTRU |  |  |  | J | 820_AB |
| 8200WKT410 |  | Curing for Upper Portion Wall & Roof Slab |  | 10d | 2015-01-31 A | 2015-02-05 A | 8200WKT400 | 100% | 2015-01-31 | 2015-02-11 |  |  |  | Cal 1 | Other Skill Labour (Civil) [320 h] | CCJ | CONSTRU |  |  |  | J | 820_AB |
| 8200WKT430 |  | Construction of Walkway |  | 14d | 2015-02-02 A | 2015-02-14 A | 8200WKT400 | 100% | 2015-02-11 | 2015-03-02 |  |  |  | Cal 1 | Other Skill Labour (Civil) [448 h] | CCJ | CONSTRU |  |  |  | J | 820_AB |
| 8200WKT420 |  | Dismantle falsework and formwork |  | 4d | 2015-02-06 A | 2015-02-10 A | 8200WKT410 | 100% |  |  |  |  |  | Cal 1 | Other Skill Labour (Civil) [128 h] | CCJ | CONSTRU |  |  |  | J | 820_AB |
| 8200WKT440 |  | 811A C&C U/T- Degree 1 works (Target: 25Jan15) |  | 14d | 2015-02-16 A | 2015-03-13 A | 8200WKT420, 8200WKT430 | 100% | 2015-02-16 | 2015-03-06 |  |  |  | Cal 1 | Other Skill Labour (Civil) [448 h] | CCJ | CONSTRU |  |  |  | J | 820_AB |

| ID | WBS | Activity | Duration | Start | Finish | Predecessors | Complete | Remaining | Planned start | Planned finish | Total float | Free float | Calendar | Resources | LEVEL 1 | LEVEL 2 | Cost Centre | 820_As-built |
| --- | --- | --- | --- | --- | --- | --- | --- | --- | --- | --- | --- | --- | --- | --- | --- | --- | --- | --- |
|  | 3 | **Backfilling & Re-instatement** |  | 2015-03-25 | 2015-08-06 |  |  |  |  |  |  |  |  |  |  |  |  |  |
| 8200WKT510 |  | Backfilling to +4.5mPD | 38d | 2015-03-25 A | 2015-06-15 | 8200WKT440 | 80% | 12d | 2015-03-25 | 2015-05-16 | -69d | 0d | Cal 1 | Other Skill Labour (Civil) [800 h]; Plant Operator [400 h]; Backhoe [400 h]; Roller [38] | CCJ | CONSTRU | J | 820_AB |
| 8200WKT500 |  | D/T & U/T: Second Cast Concrete | 18d | 2015-06-16 | 2015-07-08 | 8200WKT510 |  |  |  |  | -69d | 0d | Cal 1 | Other Skill Labour (Civil) [576 h] | CCJ | CONSTRU | J | 820_AB |
| 8200WKT540 |  | Backfilling from +4.5mPD to Ground Level | 12d | 2015-07-09 | 2015-07-24 | 8200WKT500 |  |  |  |  | -69d | 0d | Cal 1 | Other Skill Labour (Civil) [384 h]; Plant Operator [96 h]; Backhoe [96 h]; Roller [12] | CCJ | CONSTRU | J | 820_AB |
| 8200WKT520 |  | Re-instatement and Make Good | 11d | 2015-07-25 | 2015-08-06 | 8200WKT540 |  |  |  |  | -69d | 0d | Cal 1 | Other Skill Labour (Civil) [352 h] | CCJ | CONSTRU | J | 820_AB |
| 8200WKT530 |  | Injection of PU grouting at the interface of TBM & C&C tunnel (both D/T & U/T) | 11d | 2015-07-25 | 2015-08-06 | 8200WKT540 |  |  |  |  | -69d | 0d | Cal 1 | Other Skill Labour (Civil) [384 h] | CCJ | CONSTRU | J | 820_AB |

## Activity codes

| Code | Value | Meaning |
| --- | --- | --- |
| 820_As-built | 820_AB | 820 As-Built |
| 820_As-built-verified | 820_ABV | 820 As-built verified |
| Areas/ Rooms | DT | Track Area - Down Track |
| Areas/ Rooms | UT | Track Area - Up Track |
| Classification of Works | EPIW | Essential Public Infrastructure Works |
| Classification of Works | RRIW | Reprovisioning, Remedial & Improvement Works |
| Classification of Works | UTD | Utilities Diversion |
| Contracts | 811A | 811A - WKT Approach Tunnels - North |
| Contracts | 820 | 820 - Mei Lai Road to Hoi Ting Road Tunnels |
| Cost Centre | A | Cost Centre A - Preliminaries |
| Cost Centre | B | Cost Centre B - Specialised Construciton Machinery & Site Assembly |
| Cost Centre | C | Cost Centre C - Mei Lai Road to Hoi Ting Road Tunnel |
| Cost Centre | D | Cost Centre D - Cut & Cover Tunnel at NamCheong Ventilation Building |
| Cost Centre | E | Cost Centre E - Nam Cheong Ventilation Building |
| Cost Centre | F | Cost Centre F - Obstructions Removal & Reinstatment Works |
| Cost Centre | G | Cost Centre G - Utility Diversion Works |
| Cost Centre | H | Cost Centre H - Entrustment Piling Works to Footbridges |
| Cost Centre | I3 | Cost Centre I3 (Option) - HD's Entrustment Works - Carpark/ Welfare Block |
| Cost Centre | I4 | Cost Centre I4 (Option) - HD's Entrustment Works - Podium Shop |
| Cost Centre | I5 | Cost Centre I5 (Option) - HD's Entrustment Works - Bored Piles to Elevated Walkway |
| Cost Centre | J | Cost Centre J - Cut & Cover Tunnels at Hoi Ting Road Retrieval Shaft |
| LEVEL 1 | ACCE | Schedule of Access Dates and Vacation Dates |
| LEVEL 1 | CC A | Cost Centre A - Preliminaries |
| LEVEL 1 | CC B | Cost Centre B - Tunnel Boring Machine (TBM) |
| LEVEL 1 | CC C | Cost Centre C-Mei Lai Road- Hoi Ting Road Tunnel |
| LEVEL 1 | CC D | CostCentreD-Nam Cheong Building Cut&Cover Tunnel |
| LEVEL 1 | CC E | Cost Centre E-Nam Cheong Ventilation Building |
| LEVEL 1 | CC F | Cost Centre F-Obstruction Removal & Reinstate Wk |
| LEVEL 1 | CC G | Cost Centre G - Utility Diversion Works |
| LEVEL 1 | CC H | Cost Centre H - Piling Wks to Footbridges |
| LEVEL 1 | CC I3 | Cost Centre I3 - Carpark/Welfare Block |
| LEVEL 1 | CC I4 | Cost Centre I4 - Podium Shop |
| LEVEL 1 | CC I5 | Cost Centre I5 - Bored Piles to Elevated Walkway |
| LEVEL 1 | CCJ | Cost Centre J - Cut & Cover Tunnels at Hoi Ting Road Retrieval Shaft |
| LEVEL 1 | DEG | Table 4 - Specified Degrees of Completion of the Works |
| LEVEL 1 | GEN | General |
| LEVEL 1 | PROG DATA | Programme Data |
| LEVEL 1 | SYS ASS SC | System Assurance Schedule |
| LEVEL 2 | AC DATO | Access Dates for Option I3 & I4 |
| LEVEL 2 | AC LAUS | Access Opening within Launching Shaft |
| LEVEL 2 | ACC DAT | Access Date |
| LEVEL 2 | Assurance | System Assurance Schedule |
| LEVEL 2 | BARGING PO | Barging Point |
| LEVEL 2 | BOX FS1 | Box Culvert FS1 Barrettes Removal |
| LEVEL 2 | CL AC O | Close Out Temporary Access Opening |
| LEVEL 2 | CLP POW | Schedule of & Power On Dates |
| LEVEL 2 | COMP SPE00 | Completion of Specifited Degrees of Completion of the Works |
| LEVEL 2 | CONSTRU | Construction |
| LEVEL 2 | CROSS PASS | Cross Passages |
| LEVEL 2 | CUT&CTU | Cut and Cover Tunnel Works |
| LEVEL 2 | DESIGN | Design Preparation/Submission/Approval |
| LEVEL 2 | DWALL | Diaphragm Wall Design/Submission/Approval |
| LEVEL 2 | ENG OFF | Engineer's Office |
| LEVEL 2 | F3HKIVE | F3 Ground Treatment Works for HKIVE (Haking Wong) School |
| LEVEL 2 | F4CSW | F4 Cheung Sha Wan Cargo Pier-Remove Obstruct Pile |
| LEVEL 2 | FMO PIE | F5 Pile Removal for Demolished FMO Market Pier B |
| LEVEL 2 | KEY | Schedule of Key Dates |
| LEVEL 2 | LCK OVB | F2 Complete LaiChiKok Overpass New Concrete Beam |
| LEVEL 2 | MILESTO | IPS Milestones |
| LEVEL 2 | MS PREP | Method Statement Submission and Approval |
| LEVEL 2 | NC1 CUL | G3 NC1 DSD Culvert - Remove Barrette |
| LEVEL 2 | OBSTRUCTIO | Obstruction Removed by Other Project Contractor |
| LEVEL 2 | OFF | Site Office |
| LEVEL 2 | PROCURE | Procurement |
| LEVEL 2 | RD1 | RD1 Pile Removal |
| LEVEL 2 | RE DATO | Return Dates for Option I3 & I4 |
| LEVEL 2 | RETURND | Return Date |
| LEVEL 2 | RISINGM | G5 Rising Main Diversion& FMO Pier A PileRemoval |
| LEVEL 2 | SEG MOU | Tunnel Segment Fabrication |
| LEVEL 2 | SITE ESTAB | Site Establishment |
| LEVEL 2 | SSPPIER | F6 Sham Shui Po Ferry Pier - Pile Removal |
| LEVEL 2 | STAT IN | Works Required for Statutory Inspection |
| LEVEL 2 | SUBMN | Submission |
| LEVEL 2 | Submn-1 | Submission |
| LEVEL 2 | TBM RSH | TBM Retrieval Shaft at Hoi Ting Road |
| LEVEL 2 | TBM630 | TBM Excavation with Deg.1 Wks (Southern Tunnel) |
| LEVEL 2 | TBM631 | TBM Excavation with Deg.1 Wks (Northern Tunnell) |
| LEVEL 2 | TC | Training Centre |
| LEVEL 2 | TTMPREP | TTMS Submission and Approval |
| LEVEL 2 | TUNALG | Tunnel Alignment Design/Submission/Approval |
| LEVEL 2 | TUNLIND | Tunnel Lining Design/Submission/Approval |
| LEVEL 2 | TUNNEL WKS | Tunnelling Works |
| LEVEL 2 | TWL SUM | F1 Complete TWL New Sump Provision |
| LEVEL 2 | VENT BU | Ventilation Building |
| LEVEL 2 | WD1 CUL | G4 DSD Culvert WD1 Potential Obstruction |
| LEVEL 2 | YC2 CUL | G2 YC2 Culvert-Remove Barrette& ModifyFoundation |
| LEVEL 2 | ZONE1SH | Zone A |
| LEVEL 2 | ZONE2SH | Zone B |
| LEVEL 3 | 1.1DSEW | 1.1m Dia. Sewer Pipe Diversion |
| LEVEL 3 | 1.8DSEW | 1.8m Dia. Sewer Pipe Diversion |
| LEVEL 3 | 1TBM PR | 1st TBM Procurement |
| LEVEL 3 | 2TBM PR | 2nd TBM Procurement |
| LEVEL 3 | ABWF+EM | ABWF and E&M Works |
| LEVEL 3 | ACCD DC | Access Dates for Designated Contractor |
| LEVEL 3 | ADIT | Adit Construction |
| LEVEL 3 | CCVS | Cut & Cover Tunnel (South) |
| LEVEL 3 | CIRSHAF | Circular Shaft Construction |
| LEVEL 3 | CONS | Construction |
| LEVEL 3 | CONT | Contamination |
| LEVEL 3 | CP81 | CP81 (XRL821) |
| LEVEL 3 | CP82 | CP82 (XRL821) |
| LEVEL 3 | CP83 | CP83 (XRL821) |
| LEVEL 3 | CP84 | CP84 (XRL821) |
| LEVEL 3 | CP85 | CP 85 |
| LEVEL 3 | CP86 | CP 86 |
| LEVEL 3 | CP87 | CP 87 |
| LEVEL 3 | CP88 | CP 88 |
| LEVEL 3 | CP89 | CP 89 |
| LEVEL 3 | CP90 | CP 90 |
| LEVEL 3 | CP91 | CP 91 |
| LEVEL 3 | CP92 | CP 92 |
| LEVEL 3 | CP93 | CP 93 |
| LEVEL 3 | CP94 | CP 94 |
| LEVEL 3 | CP95 | CP 95 & Pump Sump |
| LEVEL 3 | CP96 | CP 96 |
| LEVEL 3 | CP97 | CP 97 |
| LEVEL 3 | CP98 | CP 98 |
| LEVEL 3 | CRIT DA | Critical Dates |
| LEVEL 3 | CULFOUN | Proposed Culvert New Founding System |
| LEVEL 3 | DEG 1 C | Deg. 1 Completion |
| LEVEL 3 | DEG 2 C | Deg. 2 Completion |
| LEVEL 3 | DEG 3 C | Deg. 3 Completion |
| LEVEL 3 | DES SUB | Design Submission & Approval |
| LEVEL 3 | DESIGN | Design |
| LEVEL 3 | DT | Downtrack Construction |
| LEVEL 3 | EX SUMP | Modification of Existing Sump |
| LEVEL 3 | EXT WKS | External Works |
| LEVEL 3 | FABRIC | Fabrication |
| LEVEL 3 | FB 1 | Footbridge No.1 |
| LEVEL 3 | FB 2 | Footbridge No.2 |
| LEVEL 3 | FB 3 | Footbridge No.3 |
| LEVEL 3 | FS1 | Underpinning Works for FS1 |
| LEVEL 3 | MS PREP | Method Statement Submission and Approval |
| LEVEL 3 | O&M AsB | Completion |
| LEVEL 3 | POWCABL | Power Cable & Fresh Water Main |
| LEVEL 3 | RAFT FT | Raft Footing Construction |
| LEVEL 3 | RC STRU | Reinforced Concrete Structure |
| LEVEL 3 | REINSTA | Reinstatement |
| LEVEL 3 | RMPI1-9 | Removal of Piles: P1 to P3 & P9 |
| LEVEL 3 | RMPI4-8 | Removal of Piles: P4 to P6 & P7 & P8 |
| LEVEL 3 | SCHME | Diversion Scheme Submission |
| LEVEL 3 | SITEPOS | Site Possession Application |
| LEVEL 3 | STAGE0 | Stage 0 |
| LEVEL 3 | STAGE1 | Stage 1 |
| LEVEL 3 | STAGE2 | Stage 2 |
| LEVEL 3 | STAGE3 | Stage 3 |
| LEVEL 3 | STP | Slurry Treatment Plants |
| LEVEL 3 | TBMD/TC | TBM D/T Culvert |
| LEVEL 3 | TBMU/TC | TBM U/T Culvert |
| LEVEL 3 | TEMPWKD | Temp. Works Design Submission |
| LEVEL 3 | TREATPT | Storage Treatment Plant |
| LEVEL 3 | TTMPREP | TTMS Submission and Approval |
| LEVEL 3 | TTMS/AP | TTM Scheme Submission & Approval |
| LEVEL 3 | UNDP P1 | Underpinning Works for Pile Cap at Grid 1 |
| LEVEL 3 | UNDP P2 | Underpinning Works for Pile Cap at Grid 2 |
| LEVEL 3 | UNDP P3 | Underpinning Works for Pile Cap at Grid 3 |
| LEVEL 3 | UT | Uptrack Construction |
| LEVEL 3 | UTILI C | Utilities Coordination |
| LEVEL 3 | UTILI D | Utilities Diversion |
| LEVEL 3 | ZONE1B | Zone A Construction |
| LEVEL 3 | ZONE2B | Zone B West (Not Within Utilities Zone) |
| LEVEL 3 | ZONE2EX | Zone B Excavation |
| LEVEL 3 | ZONE2G | Zone B Remaining |
| LEVEL 3 | o | General |
| LEVEl 4 | AD827 | DC827 |
| Location of Works | 2010 | Bored Tunnels South of Nam Cheong Launching Shaft |
| Location of Works | 2020 | Nam Cheong Launchoing Shaft |
| Location of Works | 2030 | Bored Tunnels North of Nam Cheong Launching Shaft |
| Location of Works | 2050 | VB7 - Nam Cheong Ventilation Building |
| Location of Works | 3110 | Barging point - Nm Cheong |
| Phases of Works | C010 | Design and Approval |
| Phases of Works | C020 | Preparation/ Enabling Works/ Utility Diversions |
| Phases of Works | C030 | Procuremetn / Manufacture/ Delivery |
| Phases of Works | C040 | TTMS Implementation |
| Phases of Works | C050 | Temporary Cofferdam |
| Phases of Works | C060 | Foundation |
| Phases of Works | C080 | Structural Works |
| Phases of Works | C090 | Tunnelling Works |
| Phases of Works | C100 | ABWF Works |
| Responsible (bm makes Global) | ARo | Andre Routier |
| Responsible (bm makes Global) | DCl | David Clayton |
| Responsible (bm makes Global) | DJa | Didier Jacques |
| Responsible (bm makes Global) | INg | Ivan Ng |
| Responsible (bm makes Global) | JMB | Jean-Michel Bicat |
| SUMMARY | PILEREM | Pile Removal |
| SUMMARY | TTMS AP | TTMS Approval |
| SUMMARY | UTILITY | Utilities Diversion |
| SUMMARY | VB & CC | Vent Building & Cut & Cover Tunnel |
| Sub-locationof Works | CCT | Cut and Cover Tunnesl |
| Sub-locationof Works | CP | Cross Passages |
| Sub-locationof Works | EXT | External Works |
| Sub-locationof Works | SL | Service Level |
| Sub-locationof Works | TL | Track Level |
| Sub-locationof Works | TUNN | Tunnels - Northbound |
| Sub-locationof Works | TUNS | Tunnels - Southbound |
| Sub-locationof Works | U1 | U1 Level |
| TS & TN | N | Northbound |
| TS & TN | S | Southbound |
| Works Area | 10.1 | Works Area 10.1 |
| Works Area | 10.2 | Works Area 10.2 |
| Works Area | 10.3 | Works Area 10.3 |
| Works Area | 10.3U | Works Area 10.3U |
| Works Area | 11.10B | Works Area 11.10B |
| Works Area | 11.12 | Works Area 11.12 |
| Works Area | 11.15 | Works Area 11.15 |
| Works Area | 11.21 | Works Area 11.21 |
| Works Area | 11.23A | Works Area 11.23A |
| Works Area | 11.26A | Works Area 11.26A |
| Works Area | 11.27 | Works Area 11.27 |
| Works Area | 11.29A | Works Area 11.29A |
| Works Area | 11.29D | Works Area 11.29D |
| Works Area | 11.29E | Works Area 11.29E |
| Works Area | 11.29F | Works Area 11.29F |
| Works Area | 11.30 | Works Area 11.30 |
| Works Area | 12.1 | Works Area 12.1 |
