# Ballard Test Fit Origional 11 Mo 10 8 21 FINAL

Schedule from Primavera P6, 2020-02-24 to 2021-03-17, data date 2020-02-25, A marks actual dates.

## Calendars

- 5-10s wo/Holidays: Mon-Fri 08:00-12:00, 13:00-19:00; Sat-Sun off.
- 24/7: Mon-Sun 00:00-00:00.

## Resources

| Resource | Group |
| --- | --- |
| SITE - Land | material |
| SITE - Land Road | material |
| Ground Disturbance | material |
| Mobile Equipment | material |
| SITE - Roads | material |
| SITE - Pedestrian Walkways | material |
| DW Piping -4 | material |
| Electrical | material |
| Material Handling | material |
| PFP - 4 - Riser Room | material |
| ICT - 3 | material |
| HRA - ELEC - Exterior Lights | equipment |
| HRA ADMIN | equipment |
| NPW Piping -1 | material |
| Lifting Operations | material |
| Mobile Equipment - ADMIN | equipment |
| Mobile Equipment - Admin - PEMB Crane | equipment |
| DW Piping -2 | material |
| STRC - A - Purlins | material |
| Work at Heights | material |
| Driving | material |
| Working from Heights ADMIN | equipment |
| North-7 | equipment |
| Mobile Equipment - COLO 1 - Excavator - Perimeter | equipment |
| Mobile Equipment - COLO 2 - Excavator - Perimeter | equipment |
| HRA COLO 1 | equipment |
| UG - 2 - Piping | material |
| Mobile Equipment - COLO 1 - PEMB Crane | equipment |
| NPW Piping -2 | material |
| STRC - 1 - Purlins | material |
| Working from Heights COLO 1 | equipment |
| ARCH - 1 - Ceiling - Cell 4 - DH | material |
| MECH - A - ACC Unit | material |
| Confined Space | material |
| FPRT - A - Fire Protection System | material |
| CTRL - A - Equipment and Devices | material |
| ARCH - 1 - Ceiling | material |
| ELEC - 1 - Cell 2 - Busway | material |
| Crane - Base | equipment |
| Crane - Boom - Extension | equipment |
| Crane - Boom | equipment |
| Truck and Semitrailer | equipment |
| Cones | equipment |
| Driving - Round Loop | equipment |
| Cones | equipment |
| Cones | equipment |
| Cones | equipment |
| STRC - 1 - Gen Conductor Frame - Cell 1 | material |
| STRC - 1 - Gen Conductor Frame - Cell 2 | material |
| STRC - 1 - Gen Conductor Frame - Cell 4 | material |
| STRC - 1 - Gen Conductor Frame - Cell 3 | material |
| HRA COLO 1 ELEC YARD | equipment |
| ARCH - 2 - Ceiling - Cell 3 - Mech | material |
| ELEC - 1 - Busway - Cell 1 | material |
| ELEC - 1 - Busway - Cell 2 | material |
| ELEC - 1 - Busway - Cell 3 | material |
| ELEC - 1 - Busway - Cell 4 | material |
| FPRT - 1 - Fire Protection System | material |
| MECH - 1 - Mechanical Piping | material |
| PFP - 1 - Sanitary and Vent Piping | material |
| CTRL - 1 - Equipment and Devices | material |

## Schedule

| ID | WBS | Activity | Type | Duration | Start | Finish | Predecessors | Complete | Remaining | Planned start | Planned finish | Total float | Free float | Constraint | Resources | BUILDING SECTOR | BUILDING SUB-SECTOR | AREA | DISCIPLINE | SYSTEM | CAMPUS | BUILDING | PHASE | ACTION | PART | ASSEMBLY |
| --- | --- | --- | --- | --- | --- | --- | --- | --- | --- | --- | --- | --- | --- | --- | --- | --- | --- | --- | --- | --- | --- | --- | --- | --- | --- | --- |
|  | 1 | **Ballard Test Fit** |  |  | 2020-02-24 | 2021-03-17 |  |  |  |  |  |  |  |  |  |  |  |  |  |  |  |  |  |  |  |  |
|  | 1 | **Construction Summary** |  |  | 2020-02-24 | 2021-01-21 |  |  |  |  |  |  |  |  |  |  |  |  |  |  |  |  |  |  |  |  |
| BIM-01-SUM-SITE |  | Site Summary | level of effort | 270d | 2020-02-24 A | 2020-12-23 | BIM-01-ML-G-PROJ-S, BIM-01-S-MOB-0010 SS, BIM-01-S-LHP-0060 FF | 20% | 217d | 2020-02-25 | 2021-03-08 | 21d | 0d |  |  | N/A | N/A | N/A |  |  |  |  |  |  |  |  |
| BIM-01-SUM-ESW |  | Early Site Work Summary | level of effort | 0d | 2020-02-25 A | 2020-02-25 A | BIM-01-ML-G-PROJ-S | 100% |  |  |  |  |  |  | SITE - Land [1]; SITE - Land Road [1] | N/A | N/A | N/A |  |  |  |  |  |  |  |  |
| BIM-01-SUM-FND |  | Foundations Summary | level of effort | 93d | 2020-03-24 | 2020-07-30 | BIM-01-S-ESW-0010, BIM-01-AD-FND-0010 SS |  |  |  |  | 0d |  |  |  | N/A | N/A | N/A |  |  |  |  |  |  |  |  |
| BIM-01-SUM-AD-FT |  | Admin and Colo 1 Fitout Summary | level of effort | 199d | 2020-04-20 | 2021-01-21 | BIM-01-AD-CSA-0010 SS, BIM-01-AD-FND-0010 FS-15d |  |  |  |  | 0d |  |  |  | ADMIN | N/A | N/A |  |  |  |  |  |  |  |  |
| BIM-01-SUM-CS |  | Core and Shell Summary | level of effort | 69d | 2020-06-05 | 2020-09-09 | BIM-01-AD-SOG-0010 SS |  |  |  |  | 14d | 0d |  |  | N/A | N/A | N/A |  |  |  |  |  |  |  |  |
|  | 2 | **Milestones** |  |  | 2020-02-24 | 2021-03-17 |  |  |  |  |  |  |  |  |  |  |  |  |  |  |  |  |  |  |  |  |
|  | 1 | **Project Milestones** |  |  | 2020-02-24 | 2020-02-25 |  |  |  |  |  |  |  |  |  |  |  |  |  |  |  |  |  |  |  |  |
| BIM-01-ML-G-ESW-S |  | Early Site Work Start | milestone | 0d | 2020-02-24 A | 2020-02-24 A | BIM-01-ML-G-PROJ-S SS | 100% |  | 2020-02-25 | 2020-02-25 |  |  | start on 2020-02-24 |  | GEN | N/A | N/A | GEN | A | CHI | 10 | PRELIM |  |  |  |
| BIM-01-ML-G-PROJ-S |  | Project Start | milestone | 0d | 2020-02-25 | 2020-02-25 |  |  |  |  |  | -1d | 0d | start on or before 2020-02-24 |  | GEN | N/A | N/A | GEN | A | CHI | 10 | PRELIM |  |  |  |
|  | 2 | **Contractual Milestones - Div 1 Specs** |  |  | 2020-02-25 | 2021-03-17 |  |  |  |  |  |  |  |  |  |  |  |  |  |  |  |  |  |  |  |  |
|  | 1 | **General** |  |  | 2020-02-25 | 2020-12-23 |  |  |  |  |  |  |  |  |  |  |  |  |  |  |  |  |  |  |  |  |
| BIM-01-00-MOB-S |  | Start Mobilization | milestone | 0d | 2020-02-25 | 2020-02-25 | BIM-01-S-MOB-0010 SS |  |  |  |  | 68d | 20d |  |  | GEN | N/A | N/A | GEN | A | CHI | 10 | PRELIM |  |  |  |
| BIM-01-00-PAD-F |  | Complete Building Footprint Pad Ready | milestone | 0d | 2020-04-24 | 2020-04-24 | BIM-01-S-ESW-0030, BIM-01-S-ESW-0040 |  |  |  |  | 0d |  |  |  | GEN | N/A | N/A | GEN | A | CHI | 10 | PRELIM |  |  |  |
| BIM-01-00-EW-S |  | Start Earthworks | milestone | 0d | 2020-04-27 | 2020-04-27 | BIM-01-AD-FND-0010 SS, BIM-01-00-MOB-S SS |  |  |  |  | 95d | 74d |  |  | GEN | N/A | N/A | GEN | A | CHI | 10 | PRELIM |  |  |  |
| BIM-01-00-EW-F |  | Complete Earthworks | milestone | 0d | 2020-05-22 | 2020-05-22 | BIM-01-S-ESW-0060 |  |  |  |  | 75d | 54d |  |  | GEN | N/A | N/A | GEN | A | CHI | 10 | PRELIM |  |  |  |
| BIM-01-00-UGU-F |  | Complete U/G Utilities (No Elec) | milestone | 0d | 2020-07-09 | 2020-07-09 | BIM-01-S-UGU-0010, BIM-01-S-UGU-0030, BIM-01-S-UGU-0040, BIM-01-S-UGU-0020, BIM-01-S-UGU-0070 |  |  |  |  | 92d | 0d |  |  | GEN | N/A | N/A | CIVIL | C | CHI | 10 | ML | N/A | N/A | N/A |
| BIM-01-00-UGE-F |  | Complete Utility/MV UG Electrical | milestone | 0d | 2020-09-28 | 2020-09-28 | BIM-01-01-EXT-ELEC-0030, BIM-01-S-UGE-0200 |  |  |  |  | 72d | 0d |  |  | GEN | N/A | N/A | ELEC | E | CHI | 10 | ML | N/A | N/A | N/A |
| BIM-01-00-LHP-F |  | Complete Landscaping, Hardscaping | milestone | 0d | 2020-12-23 | 2020-12-23 | BIM-01-S-LHP-0060, BIM-01-S-LHP-0050, BIM-01-S-LHP-0040 |  |  |  |  | 21d |  |  |  | GEN | N/A | N/A | LDSCP | N/A | CHI | 10 | ML | N/A | N/A | N/A |
|  | 2 | **Colo 1** |  |  | 2020-06-16 | 2021-03-17 |  |  |  |  |  |  |  |  |  |  |  |  |  |  |  |  |  |  |  |  |
| BIM-01-01-FND-S |  | Start Foundation for Colo 1 | milestone | 0d | 2020-06-16 | 2020-06-16 | BIM-01-01-FND-0030 SS |  |  |  |  | 34d |  |  |  | COLO1 | N/A | N/A | STRC | CONC | CHI | 10 | ML | N/A | N/A | N/A |
| BIM-01-01-FND-F |  | Complete Foundation for Colo 1 | milestone | 0d | 2020-06-29 | 2020-06-29 | BIM-01-01-FND-0020, BIM-01-01-FND-0010, BIM-01-01-FND-0030 |  |  |  |  | 23d |  |  |  | COLO1 | N/A | N/A | STRC | CONC | CHI | 10 | ML | N/A | N/A | N/A |
| BIM-01-01-SUP-S |  | Start Superstructure for Colo 1 | milestone | 0d | 2020-06-30 | 2020-06-30 | BIM-01-01-FND-0030 FS+1d |  |  |  |  | 23d |  |  |  | ADMIN | N/A | N/A | SEC | SYS | CHI | 10 | ML | N/A | N/A | N/A |
| BIM-01-01-SOG-F |  | Slab on Grade Complete for Colo 1 | milestone | 0d | 2020-08-21 | 2020-08-21 | BIM-01-01-SOG-0030 |  |  |  |  | 0d |  |  |  | COLO1 | N/A | N/A | STRC | CONC | CHI | 10 | ML | N/A | N/A | N/A |
| BIM-01-01-L1CX-S |  | Start L1 CX (Red Tag) for Colo 1 | milestone | 0d | 2020-09-21 | 2020-09-21 | BIM-01-01-EXT-ELEC-0110 |  |  |  |  | 46d | 33d |  |  | COLO1 | N/A | N/A | ARCH | A | CHI | 10 | ML | N/A | N/A | N/A |
| BIM-01-01-ROJ-S |  | Start First ROJ Arrival for Colo 1 | milestone | 0d | 2020-09-23 | 2020-09-23 | BIM-01-01-L1CX-0010 SS+1d |  |  |  |  | 83d | 6d |  |  | COLO1 | N/A | N/A | ARCH | A | CHI | 10 | ML | N/A | N/A | N/A |
| BIM-01-01-DRY-F |  | Weather Tight Complete for Colo 1 | milestone | 0d | 2020-10-05 | 2020-10-05 | BIM-01-01-ENV-0020 FS-4d |  |  |  |  | 29d | 0d |  |  | COLO1 | N/A | N/A | ARCH | A | CHI | 10 | ML | N/A | N/A | N/A |
| BIM-01-01-L2CX-S |  | Start L2 CX (Yellow Tag) for Colo 1 | milestone | 0d | 2020-10-20 | 2020-10-20 | BIM-01-AD-INT-ELEC-0030 FS+1d |  |  |  |  | 25d |  |  |  | COLO1 | N/A | N/A | GEN | N/A | CHI | 10 | ML | N/A | N/A | N/A |
| BIM-01-01-ROJ-F |  | Complete Last ROJ Arrival for Colo 1 | milestone | 0d | 2020-11-23 | 2020-11-23 | BIM-01-01-L1CX-0060 SS, BIM-01-01-L1CX-0050 |  |  |  |  | 0d |  |  |  | COLO1 | N/A | N/A | ARCH | A | CHI | 10 | ML | N/A | N/A | N/A |
| BIM-01-01-POW-F |  | Power-ON Utility for Colo 1 | milestone | 0d | 2020-11-27 | 2020-11-27 | BIM-01-01-EXT-ELEC-0300, BIM-01-S-UGE-0200, BIM-01-S-UGE-0210 |  |  |  |  | 29d | 25d |  |  | COLO1 | N/A | N/A | ELEC | E | CHI | 10 | ML | N/A | N/A | N/A |
| BIM-01-01-GEN-F |  | Generators Ready Fuel for Colo 1 | milestone | 0d | 2020-11-30 | 2020-11-30 | BIM-01-01-EXT-ELEC-0300 FS+1d |  |  |  |  | 0d |  |  |  | COLO1 | N/A | N/A | ELEC | E | CHI | 10 | ML | N/A | N/A | N/A |
| BIM-01-01-MEQ-S |  | Start-up Mechanical Equipment for Colo 1 | milestone | 0d | 2020-12-01 | 2020-12-01 | BIM-01-01-MG-MECH-0030 FS-4d, BIM-01-01-MG-MECH-0020, BIM-01-01-MG-MECH-0010, BIM-01-01-EXT-MECH-0030, BIM-01-01-DH-ELEC-0080 |  |  |  |  | 28d |  |  |  | COLO1 | N/A | N/A | MECH | SYS | CHI | 10 | ML | N/A | N/A | N/A |
| BIM-01-01-CSA-F |  | Interior Finishes/CSA Complete for Colo 1 | milestone | 0d | 2020-12-03 | 2020-12-03 | BIM-01-01-MG-CSA-0070, BIM-01-01-DH-CSA-0070, BIM-01-AD-CSA-0080 |  |  |  |  | 23d | 0d |  |  | COLO1 | N/A | N/A | ARCH | A | CHI | 10 | ML | N/A | N/A | N/A |
| BIM-01-01-L3CX-S |  | Start L3 Cx (Green tag) for Colo 1 | milestone | 0d | 2020-12-08 | 2020-12-08 | BIM-01-01-L2CX-0010 FS-15d |  |  |  |  | 15d |  |  |  | COLO1 | N/A | N/A | GEN | N/A | CHI | 10 | ML | N/A | N/A | N/A |
| BIM-01-01-MEP-F |  | MEP Rough-in Complete for Colo 1 | milestone | 0d | 2020-12-09 | 2020-12-09 | BIM-01-01-MG-CSA-0010, BIM-01-01-MG-MECH-0030, BIM-01-01-MG-MECH-0020, BIM-01-01-MG-CSA-0020, BIM-01-01-EXT-MECH-0040, BIM-01-01-DH-CSA-0020, BIM-01-01-MG-PLMB-0010 FS-8d |  |  |  |  | 22d |  |  |  | COLO1 | N/A | N/A | GEN | N/A | CHI | 10 | ML | N/A | N/A | N/A |
| BIM-01-01-L1CX-F |  | Complete L1 Cx (All Red Tags/ROJ) for Colo 1 | milestone | 0d | 2020-12-21 | 2020-12-21 | BIM-01-01-L1CX-0010, BIM-01-01-L1CX-0020, BIM-01-01-L1CX-0030, BIM-01-01-L1CX-0040, BIM-01-01-L1CX-0050, BIM-01-01-L1CX-0060, BIM-01-01-DH-SEC-0010 FS+2d |  |  |  |  | 23d |  |  |  | COLO1 | N/A | N/A | GEN | N/A | CHI | 10 | ML | N/A | N/A | N/A |
| BIM-01-01-L2CX-F |  | Complete L2 CX (Yellow Tag) for Colo 1 | milestone | 0d | 2020-12-28 | 2020-12-28 | BIM-01-01-L2CX-0020, BIM-01-01-L2CX-0030 |  |  |  |  | 0d |  |  |  | COLO1 | N/A | N/A | GEN | N/A | CHI | 10 | ML | N/A | N/A | N/A |
| BIM-01-01-RNI-F |  | Complete Ready for Network Install for Colo 1 | milestone | 0d | 2020-12-28 | 2020-12-28 | BIM-01-01-DH-TCOM-0030, BIM-01-01-DH-TCOM-0040, BIM-01-01-DH-TCOM-0020 SS, BIM-01-01-DH-TCOM-0010 SS, BIM-01-01-L2CX-0010 |  |  |  |  | 34d |  |  |  | ADMIN | N/A | N/A | CTRL | SYS | CHI | 10 | ML | N/A | N/A | N/A |
| BIM-01-01-BAS-F |  | Complete BAS SAT for Colo 1 | milestone | 0d | 2021-02-05 | 2021-02-05 | BIM-01-01-DH-BAS-0010, BIM-01-01-MG-BAS-0010, BIM-01-01-L3CX-0030, BIM-01-01-DH-TCOM-0010, BIM-01-01-L3CX-0050 FS-6d |  |  |  |  | 6d |  |  |  | COLO1 | N/A | N/A | CTRL | SYS | CHI | 10 | ML | N/A | N/A | N/A |
| BIM-01-01-EPM-F |  | Complete EPMS SAT for Colo 1 | milestone | 0d | 2021-02-05 | 2021-02-05 | BIM-01-01-DH-TCOM-0020, BIM-01-01-L3CX-0040, BIM-01-01-L3CX-0050 FS-6d |  |  |  |  | 6d |  |  |  | COLO1 | N/A | N/A | CTRL | SYS | CHI | 10 | ML | N/A | N/A | N/A |
| BIM-01-01-SEC-F |  | Complete Security System for Colo 1 | milestone | 0d | 2021-02-08 | 2021-02-08 | BIM-01-01-MG-SEC-0010, BIM-01-01-DH-SEC-0010, BIM-01-01-L3CX-0020, BIM-01-01-L3CX-0050 FS-5d |  |  |  |  | 5d |  |  |  | COLO1 | N/A | N/A | SEC | SYS | CHI | 10 | ML | N/A | N/A | N/A |
| BIM-01-01-FIR-F |  | Complete Fire Alarm for Colo 1 | milestone | 0d | 2021-02-12 | 2021-02-12 | BIM-01-01-DH-FA-0010, BIM-01-01-MG-FA-0010, BIM-01-01-L3CX-0050 |  |  |  |  | 0d |  |  |  | COLO1 | N/A | N/A | FA | SYS | CHI | 10 | ML | N/A | N/A | N/A |
| BIM-01-01-L3CX-F |  | Complete L3 CX (Green Tag) for Colo 1 | milestone | 0d | 2021-02-12 | 2021-02-12 | BIM-01-01-L3CX-0020, BIM-01-01-L3CX-0050 |  |  |  |  | 10d |  |  |  | COLO1 | N/A | N/A | GEN | N/A | CHI | 10 | ML | N/A | N/A | N/A |
| BIM-01-01-SSC-F |  | Complete Security System Test for Colo 1 | milestone | 0d | 2021-02-26 | 2021-02-26 | BIM-01-01-DH-SEC-0010, BIM-01-01-MG-SEC-0010, BIM-01-01-L3CX-0050, BIM-01-01-L4CX-0010 |  |  |  |  | 0d |  |  |  | COLO1 | N/A | N/A | SEC | SYS | CHI | 10 | ML | N/A | N/A | N/A |
| BIM-01-01-L4CX-F |  | Complete L4 Cx (Blue Tag) for Colo 1 | milestone | 0d | 2021-03-10 | 2021-03-10 | BIM-01-01-L4CX-0020 |  |  |  |  | 0d |  |  |  | ADMIN | N/A | N/A | CTRL | SYS | CHI | 10 | ML | N/A | N/A | N/A |
| BIM-01-01-L5CX-F |  | Complete L5/IST (White Tag) for Colo 1 | milestone | 0d | 2021-03-17 | 2021-03-17 | BIM-01-01-L5CX-0010, BIM-01-01-L5CX-0020 |  |  |  |  | 0d |  |  |  | COLO1 | N/A | N/A | GEN | N/A | CHI | 10 | ML | N/A | N/A | N/A |

| ID | WBS | Activity | Duration | Start | Finish | Predecessors | Total float | Free float | Constraint | Resources | ACTION | DISCIPLINE | SYSTEM | BUILDING SECTOR | BUILDING SUB-SECTOR | AREA | CAMPUS | BUILDING | PHASE | PART | MS_ActivityID | CHI10_Duration | CHI10_Comments |
| --- | --- | --- | --- | --- | --- | --- | --- | --- | --- | --- | --- | --- | --- | --- | --- | --- | --- | --- | --- | --- | --- | --- | --- |
|  | 3 | **Construction** |  | 2020-02-25 | 2021-03-17 |  |  |  |  |  |  |  |  |  |  |  |  |  |  |  |  |  |  |
|  | BIM-11-9 30 21,1,3,1 | **(New WBS)** |  |  |  |  |  |  |  |  |  |  |  |  |  |  |  |  |  |  |  |  |  |
|  | 1 | **Site** |  | 2020-02-25 | 2020-12-23 |  |  |  |  |  |  |  |  |  |  |  |  |  |  |  |  |  |  |
|  | 1 | **Early Site Work** |  | 2020-02-25 | 2020-05-22 |  |  |  |  |  |  |  |  |  |  |  |  |  |  |  |  |  |  |
| BIM-01-S-ESW-0010 |  | Rough Grading and Site Preparation | 20d | 2020-02-25 | 2020-03-23 | BIM-01-ML-G-PROJ-S, BIM-01-ML-G-ESW-S, BIM-01-SUM-ESW | 0d |  |  | Ground Disturbance [0.87]; Mobile Equipment [0.87] | ERECT | GEN | FENCE | SITE | N/A | GEN | CHI | 10 | SITE | SITE |  |  |  |
| BIM-01-S-ESW-0020 |  | Erect Security Fencing / Entry Gates / Security Check-points | 20d | 2020-02-25 | 2020-03-23 | BIM-01-S-ESW-0010 SS | 24d | 20d |  | Mobile Equipment [1] | ERECT | GEN | FENCE | SITE | N/A | GEN | CHI | 10 | SITE | SITE | 5 | 30 | match |
| BIM-01-S-ESW-0070 |  | Building / Site Survey | 10d | 2020-02-25 | 2020-03-09 | BIM-01-S-ESW-0010 SS | 14d | 10d |  |  |  |  |  |  |  |  |  |  |  |  |  |  |  |
| BIM-01-S-ESW-0030 |  | Establish Access Roads | 20d | 2020-03-24 | 2020-04-20 | BIM-01-S-ESW-0020 SS, BIM-01-S-ESW-0010, BIM-01-S-ESW-0070 | 4d | 0d |  | SITE - Roads [1]; SITE - Pedestrian Walkways [1]; Mobile Equipment [1]; Ground Disturbance [1] | ESTAB | CIVIL | PAVE | SITE | N/A | GEN | CHI | 10 | SITE | LANDS | 5 | 20 | match. in Early Utilities Work Package |
| BIM-01-S-ESW-0050 |  | Establish Laydown Areas | 15d | 2020-04-03 | 2020-04-23 | BIM-01-S-ESW-0010, BIM-01-S-ESW-0030 SS+8d | 31d | 1d |  | Mobile Equipment [1.5]; DW Piping -4 [1.5] | ESTAB | CIVIL | PAVE | SITE | N/A | GEN | CHI | 10 | SITE | LANDS | 5 | 10 | match. in Early Utilities Work Package |
| BIM-01-S-ESW-0040 |  | Establish Craft Parking | 15d | 2020-04-06 | 2020-04-24 | BIM-01-S-ESW-0010 FS+9d | 0d |  |  | Mobile Equipment [1.5] | ESTAB | CIVIL | PAVE | SITE | N/A | GEN | CHI | 10 | SITE | LANDS | 5 | 10 | match. in Early Utilities Work Package |
| BIM-01-S-ESW-0060 |  | Establish Trade/Fabrication Area | 15d | 2020-05-04 | 2020-05-22 | BIM-01-S-ESW-0040 FS+5d | 21d | 0d |  | Mobile Equipment [1.5] | EXCAV | STRC | PILES | SITE | N/A | N/A | CHI | 10 | SITE | SITE |  | 10 | match. in Early Utilities Work Package |
|  | 2 | **Contractor Setup** |  | 2020-02-25 | 2020-04-20 |  |  |  |  |  |  |  |  |  |  |  |  |  |  |  |  |  |  |
| BIM-01-S-MOB-0010 |  | Mobilization | 6d | 2020-02-25 | 2020-03-03 | BIM-01-SUM-ESW SS, BIM-01-ML-G-PROJ-S SS, BIM-01-S-ESW-0010 SS | 62d | 0d |  |  | MOB | GEN | N/A | GEN | GEN | GEN | CHI | 10 | SITE |  | 5 | 6 | match |
| BIM-01-S-MOB-0020 |  | Install Temporary Utilities | 20d | 2020-02-25 | 2020-03-23 | BIM-01-S-MOB-0010 SS | 69d | 24d |  | Ground Disturbance [1] | INSTALL | CIVIL | C | SITE | N/A | GEN | CHI | 10 | SITE | SITE |  | 20 | match. in Early Utilities Work Package |
| BIM-01-S-MOB-0030 |  | Install Temporary Site Lighting | 20d | 2020-03-24 | 2020-04-20 | BIM-01-S-MOB-0010 SS, BIM-01-S-ESW-0030 SS | 49d | 4d |  | Electrical [1]; Ground Disturbance [1] | INSTL | ELEC | LTNG | SITE | N/A | GEN | CHI | 10 | SITE | SITE |  | 20 | match. in Early Utilities Work Package |
| BIM-01-S-MOB-0040 |  | Install Site Trailers for GC / Trades / Washroom Trailers / Garbage Bins | 6d | 2020-03-24 | 2020-03-31 | BIM-01-S-ESW-0030 SS, BIM-01-00-MOB-S, BIM-01-S-MOB-0010 | 48d | 18d |  | Material Handling [1]; Mobile Equipment [1]; PFP - 4 - Riser Room [1] | INSTL | GEN | A | SITE | N/A | GEN | CHI | 10 | SITE | SITE | 5 | 6 | match |
|  | 3 | **Wet Utilities** |  | 2020-04-27 | 2020-07-09 |  |  |  |  |  |  |  |  |  |  |  |  |  |  |  |  |  |  |
| BIM-01-S-UGU-0010 |  | Install Site Sanitary Sewer Piping | 30d | 2020-04-27 | 2020-06-05 | BIM-01-S-ESW-0040 | 21d | 0d |  |  | INSTL | CIVIL | SANSWR | SITE | N/A | N/A | CHI | 10 | SITE | SITE |  | 40 | match |
| BIM-01-S-UGU-0020 |  | Install Site Clear Water Discharge Piping | 22d | 2020-05-25 | 2020-06-23 | BIM-01-S-ESW-0060 SS+15d | 21d | 12d |  | Ground Disturbance [0.73]; Mobile Equipment [0.73] | INSTL | CIVIL | DOMWTR | SITE | N/A | N/A | CHI | 10 | SITE | SITE |  | 40 | match |
| BIM-01-S-UGU-0030 |  | Install Site Storm Water Piping | 22d | 2020-05-27 | 2020-06-25 | BIM-01-S-ESW-0060, BIM-01-S-UGU-0010 SS+22d | 21d | 0d |  | Ground Disturbance [0.73]; Mobile Equipment [0.73] | INSTL | CIVIL | STMSWR | SITE | N/A | N/A | CHI | 10 | SITE | SITE |  | 40 | match |
| BIM-01-S-UGU-0040 |  | Install Site Domestic Water Piping | 22d | 2020-06-10 | 2020-07-09 | BIM-01-S-UGU-0030 SS+10d | 21d | 0d |  | Ground Disturbance [0.73]; Mobile Equipment [0.73] | INSTL | CIVIL | DOMWTR | SITE | N/A | N/A | CHI | 10 | SITE | SITE |  | 40 | match |
|  | 4 | **Dry Utilities** |  | 2020-04-27 | 2020-09-03 |  |  |  |  |  |  |  |  |  |  |  |  |  |  |  |  |  |  |
| BIM-01-S-UGU-0050 |  | Install Telecom Vaults and Ductbank | 45d | 2020-04-27 | 2020-06-26 | BIM-01-S-UGU-0010 SS, BIM-01-S-MOB-0010, BIM-01-S-ESW-0050, BIM-01-S-MOB-0040 | 30d | 0d |  | Ground Disturbance [1]; Mobile Equipment [1]; ICT - 3 [1] | INSTL | TELECOM | SYS | SITE | N/A | N/A | CHI | 10 | SITE | SITE |  | 45 | Ballard facility has 1 colo more |
| BIM-01-S-UGU-0070 |  | Install and Wire External Lighting Fixtures on Site | 50d | 2020-04-27 | 2020-07-03 | BIM-01-S-ESW-0040, BIM-01-S-MOB-0030, BIM-01-S-MOB-0020 | 45d | 4d |  | HRA - ELEC - Exterior Lights [500 h]; Ground Disturbance [1]; Electrical [1] | INSTL | ELEC | LTNG | SITE | N/A | DH | CHI | 10 | SITE | INTERIOR |  | 50 | In the Paving and Hardscape WorkP in CHI10 |
| BIM-01-S-UGU-0060 |  | Install Telecom-RNG Fiber underground | 40d | 2020-07-10 | 2020-09-03 | BIM-01-S-UGU-0050, BIM-01-00-UGU-F | 92d | 31d | start on or after 2020-06-10 |  | INSTL | TELECOM | FIBER | SITE | N/A | N/A | CHI | 10 | SITE | SITE |  | 30 | Ballard facility has 1 colo more |

| ID | WBS | Activity | Duration | Start | Finish | Predecessors | Total float | Free float | Resources | DISCIPLINE | SYSTEM | BUILDING SECTOR | BUILDING SUB-SECTOR | PHASE | ACTION | AREA | CAMPUS | BUILDING | PART | ASSEMBLY |
| --- | --- | --- | --- | --- | --- | --- | --- | --- | --- | --- | --- | --- | --- | --- | --- | --- | --- | --- | --- | --- |
|  | 5 | **Electrical Utilities** |  | 2020-05-07 | 2020-09-29 |  |  |  |  |  |  |  |  |  |  |  |  |  |  |  |
|  | 1 | **Vaults and Duct Banks** |  | 2020-05-07 | 2020-06-29 |  |  |  |  |  |  |  |  |  |  |  |  |  |  |  |
| BIM-01-S-UGE-0010 |  | Install Electrical Vaults | 20d | 2020-05-07 | 2020-06-03 | BIM-01-S-UGU-0050 SS+8d | 47d | 0d | Ground Disturbance [1]; Mobile Equipment [1] | ELEC | VAULT | SITE | N/A | SITE |  |  |  |  |  |  |
| BIM-01-S-UGE-0030 |  | Install Duct Banks from Utility to UMS02 | 10d | 2020-05-14 | 2020-05-27 | BIM-01-S-UGE-0010 SS+5d | 82d | 0d |  | ELEC | DCTBK | SITE | N/A | SITE |  |  |  |  |  |  |
| BIM-01-S-UGE-0050 |  | Install Duct Banks from UMS02 to UPMs in all COLO and Admin | 10d | 2020-05-21 | 2020-06-03 | BIM-01-S-UGE-0030 SS+5d | 82d | 0d |  | ELEC | DCTBK | COLO1 | N/A | SITE |  |  |  |  |  |  |
| BIM-01-S-UGE-0060 |  | Install Duct Banks from UPMs to Transformers in all COLO and Admin | 10d | 2020-06-02 | 2020-06-15 | BIM-01-S-UGE-0050 SS+8d | 82d | 10d | Mobile Equipment [1]; Ground Disturbance [1] | ELEC | DCTBK | COLO1 | N/A | SITE |  |  |  |  |  |  |
| BIM-01-S-UGE-0040 |  | Install Duct Banks from UMS01 to UPMs in all COLO and Admin | 10d | 2020-06-04 | 2020-06-17 | BIM-01-S-UGE-0010 | 72d | 0d |  | ELEC | DCTBK | COLO1 | N/A | SITE |  |  |  |  |  |  |
| BIM-01-S-UGE-0020 |  | Install Duct Banks from Utility to UMS01 | 10d | 2020-06-16 | 2020-06-29 | BIM-01-S-UGE-0040 SS+8d | 72d | 0d | Mobile Equipment [1]; Ground Disturbance [1] | ELEC | DCTBK | SITE | N/A | SITE |  |  |  |  |  |  |
|  | 2 | **Wire Pull, Test, Terminate** |  | 2020-05-28 | 2020-08-10 |  |  |  |  |  |  |  |  |  |  |  |  |  |  |  |
| BIM-01-S-UGE-0100 |  | Pull Conductors from Utility to UMS02 | 10d | 2020-05-28 | 2020-06-10 | BIM-01-S-UGE-0030 | 132d | 0d |  | ELEC | MV_WIRE | SITE | N/A | SITE |  |  |  |  |  |  |
| BIM-01-S-UGE-0160 |  | Pull Conductors from UMS02 to UPMs | 10d | 2020-06-04 | 2020-06-17 | BIM-01-S-UGE-0050 | 125d | 0d |  | ELEC | MV_WIRE | SITE | N/A | SITE |  |  |  |  |  |  |
| BIM-01-S-UGE-0110 |  | Megger Conductors from Utility to UMS02 | 8d | 2020-06-11 | 2020-06-22 | BIM-01-S-UGE-0100 | 132d | 0d |  | ELEC | MV_WIRE | SITE | N/A | SITE |  |  |  |  |  |  |
| BIM-01-S-UGE-0130 |  | Pull Conductors from UMS01 to UPMs | 10d | 2020-06-18 | 2020-07-01 | BIM-01-S-UGE-0040 | 116d | 0d | Electrical [1.25] | ELEC | MV_WIRE | SITE | N/A | SITE |  |  |  |  |  |  |
| BIM-01-S-UGE-0170 |  | Megger Conductors from UMS02 to UPMs | 10d | 2020-06-18 | 2020-07-01 | BIM-01-S-UGE-0160 | 125d | 0d |  | ELEC | MV_WIRE | SITE | N/A | SITE |  |  |  |  |  |  |
| BIM-01-S-UGE-0120 |  | Terminate Conductors at UMS02 | 10d | 2020-06-23 | 2020-07-06 | BIM-01-S-UGE-0110 | 132d | 60d |  | ELEC | MV_WIRE | SITE | N/A | SITE |  |  |  |  |  |  |
| BIM-01-S-UGE-0070 |  | Pull Conductors from Utility to UMS01 | 10d | 2020-06-30 | 2020-07-13 | BIM-01-S-UGE-0060, BIM-01-S-UGE-0020 | 72d | 0d | Electrical [1.25] | ELEC | MV_WIRE | SITE | N/A | SITE |  |  |  |  |  |  |
| BIM-01-S-UGE-0140 |  | Megger Conductors from UMS01 to UPMs | 8d | 2020-07-02 | 2020-07-13 | BIM-01-S-UGE-0130 | 116d | 0d | Electrical [8] | ELEC | MV_WIRE | SITE | N/A | SITE |  |  |  |  |  |  |
| BIM-01-S-UGE-0180 |  | Terminate Conductors from UMS02 to UPMs at Both Sides | 10d | 2020-07-02 | 2020-07-15 | BIM-01-S-UGE-0170 | 125d | 53d |  | ELEC | MV_WIRE | SITE | N/A | SITE |  |  |  |  |  |  |
| BIM-01-S-UGE-0080 |  | Megger Conductors from Utility to UMS01 | 10d | 2020-07-14 | 2020-07-27 | BIM-01-S-UGE-0070 | 72d | 0d | Electrical [2.5] | ELEC | MV_WIRE | SITE | N/A | SITE |  |  |  |  |  |  |
| BIM-01-S-UGE-0150 |  | Terminate Conductors from UMS01 to UPMs at Both Sides | 10d | 2020-07-14 | 2020-07-27 | BIM-01-S-UGE-0140 | 116d | 44d | Electrical [1.25] | ELEC | MV_WIRE | SITE | N/A | SITE |  |  |  |  |  |  |
| BIM-01-S-UGE-0090 |  | Terminate Conductors at UMS01 | 10d | 2020-07-28 | 2020-08-10 | BIM-01-S-UGE-0080 | 72d | 0d | Electrical [1.25] | ELEC | MV_WIRE | SITE | N/A | SITE |  |  |  |  |  |  |
|  | 3 | **Energization** |  | 2020-08-11 | 2020-09-29 |  |  |  |  |  |  |  |  |  |  |  |  |  |  |  |
| BIM-01-S-UGE-0190 |  | MV Cross Over | 30d | 2020-08-11 | 2020-09-21 | BIM-01-S-UGE-0090 | 72d | 0d | Electrical [1] | ELEC | FDR | SITE | N/A | ENER | FEED | N | CHI | 10 | N/A | N/A |
| BIM-01-S-UGE-0200 |  | Energize Ring Feed 1 (Utility-UMS01-UPMs) | 1d | 2020-09-28 | 2020-09-28 | BIM-01-S-UGE-0150, BIM-01-S-UGE-0190 FS+4d, BIM-01-S-UGE-0090 | 72d | 0d | Electrical [1] | ELEC | FDR | SITE | N/A | ENER | FEED | N | CHI | 10 | N/A | N/A |
| BIM-01-S-UGE-0210 |  | Energize Ring Feed 2 (Utility -UMS02-UPMs) | 1d | 2020-09-29 | 2020-09-29 | BIM-01-S-UGE-0180, BIM-01-00-UGE-F, BIM-01-S-UGE-0200, BIM-01-S-UGE-0120 | 72d | 8d | Electrical [1] | ELEC | FDR | SITE | N/A | ENER | FEED | N | CHI | 10 | N/A | N/A |

| ID | WBS | Activity | Duration | Start | Finish | Predecessors | Total float | Free float | Resources | CHI10_Duration | ACTION | DISCIPLINE | SYSTEM | BUILDING SECTOR | BUILDING SUB-SECTOR | AREA | CAMPUS | BUILDING | PHASE | PART |
| --- | --- | --- | --- | --- | --- | --- | --- | --- | --- | --- | --- | --- | --- | --- | --- | --- | --- | --- | --- | --- |
|  | 6 | **Paving and Hard Scape** |  | 2020-07-10 | 2020-11-12 |  |  |  |  |  |  |  |  |  |  |  |  |  |  |  |
| BIM-01-S-LHP-0010 |  | Place Base Course Aggregate | 40d | 2020-07-10 | 2020-09-03 | BIM-01-S-UGU-0040, BIM-01-S-UGU-0050, BIM-01-S-UGE-0010 | 21d | 0d | Mobile Equipment [1] | 30 | PLACE | CIVIL | PAVE | SITE | N/A | GEN | CHI | 10 | SITE | SITE |
| BIM-01-S-LHP-0020 |  | Install Curb & Gutter | 60d | 2020-08-07 | 2020-10-29 | BIM-01-S-LHP-0010 SS+20d, BIM-01-00-EW-F, BIM-01-S-UGU-0070, BIM-01-00-EW-S | 21d | 0d | Mobile Equipment [1] | 30 | INSTL | LDSCP | PAVE | SITE | N/A | GEN | CHI | 10 | SITE | BLDG |
| BIM-01-S-LHP-0030 |  | Sub Base and Pave Site Areas with HMA | 60d | 2020-08-21 | 2020-11-12 | BIM-01-S-LHP-0020 SS+10d, BIM-01-SUM-SITE | 21d | 0d | Mobile Equipment [0.75] | 20 | PV | CIVIL | PAVE | SITE | N/A | GEN | CHI | 10 | SITE | SITE |
|  | 7 | **Landscaping & Specialities** |  | 2020-10-23 | 2020-12-23 |  |  |  |  |  |  |  |  |  |  |  |  |  |  |  |
| BIM-01-S-LHP-0040 |  | Excavate and Backfill Service Yards | 12d | 2020-10-23 | 2020-11-09 | BIM-01-S-LHP-0030 SS+45d | 21d | 0d | Ground Disturbance [1]; Mobile Equipment [1] | 20 | EXCAV | STRC | PILES | SITE | N/A | N/A | CHI | 10 | SITE | SITE |
| BIM-01-S-LHP-0050 |  | Erect Fencing / Entry Gates | 16d | 2020-11-10 | 2020-12-01 | BIM-01-S-LHP-0040, BIM-01-SUM-SITE | 21d | 0d | Mobile Equipment [1] | 45 | ERECT | ARCH | FENCE | SITE | N/A | N/A | CHI | 10 | SITE | SITE |
| BIM-01-S-LHP-0060 |  | Erect Fencing for Electrical Yard | 16d | 2020-12-02 | 2020-12-23 | BIM-01-S-LHP-0050, BIM-01-SUM-SITE | 21d | 0d | Mobile Equipment [1] |  | INSTL | STRC | PRIME | SITE | N/A | N/A | CHI | 10 | SITE | SITE |
|  | 2 | **Core & Shell** |  | 2020-04-27 | 2020-10-08 |  |  |  |  |  |  |  |  |  |  |  |  |  |  |  |
|  | 1 | **Admin** |  | 2020-04-27 | 2020-10-05 |  |  |  |  |  |  |  |  |  |  |  |  |  |  |  |
|  | 1 | **Structure** |  | 2020-04-27 | 2020-06-29 |  |  |  |  |  |  |  |  |  |  |  |  |  |  |  |
|  | 1 | **Foundations** |  | 2020-04-27 | 2020-05-22 |  |  |  |  |  |  |  |  |  |  |  |  |  |  |  |
| BIM-01-AD-FND-0010 |  | Excavate/FRP Perimeter Foundations in Admin | 10d | 2020-04-27 | 2020-05-08 | BIM-01-00-PAD-F | 0d |  | Mobile Equipment [0.67]; Ground Disturbance [0.67]; HRA ADMIN [100 h]; NPW Piping -1 [100] | 6 | EXCAV | STRC | FND | ADMIN | N/A | GEN | CHI | 10 | CS | BLDG |
| BIM-01-AD-FDN-0040 |  | Rough In Electrical UG | 8d | 2020-05-01 | 2020-05-12 | BIM-01-AD-FND-0010 SS+4d | 0d |  |  |  |  |  |  |  |  |  |  |  |  |  |
| BIM-01-AD-FND-0020 |  | Waterproof/Backfill Perimeter Foundations in Admin | 10d | 2020-05-04 | 2020-05-15 | BIM-01-AD-FND-0010 SS+5d | 20d | 0d |  | 10 | WTP | STRC | FND | ADMIN | N/A | GEN | CHI | 10 | CS | BLDG |
| BIM-01-AD-FND-0030 |  | Excavate/FRP/Backfill Interior Column Footings in Admin | 10d | 2020-05-11 | 2020-05-22 | BIM-01-AD-FND-0010 SS, BIM-01-AD-FND-0020 SS+5d | 20d | 0d | Mobile Equipment [1]; Ground Disturbance [1] | 10 | EXCAV | STRC | FND | ADMIN | N/A | GEN | CHI | 10 | CS | BLDG |
|  | 2 | **Structural Steel and Decking** |  | 2020-05-21 | 2020-06-16 |  |  |  |  |  |  |  |  |  |  |  |  |  |  |  |
| BIM-01-AD-SUP-0010 |  | Erect PEMB Columns in Admin | 8d | 2020-05-21 | 2020-06-01 | BIM-01-AD-FND-0030 SS+8d | 20d | 0d | Lifting Operations [1]; Mobile Equipment [1] | 10 | ERECT | STRC | PEMB | ADMIN | N/A | GEN | CHI | 10 | CS | BLDG |
| BIM-01-AD-SUP-0020 |  | Erect PEMB Joists in Admin | 8d | 2020-05-25 | 2020-06-03 | BIM-01-AD-SUP-0010 SS+2d | 24d | 0d | Mobile Equipment - ADMIN [80 h]; Mobile Equipment - Admin - PEMB Crane [80 h]; Lifting Operations [1]; Mobile Equipment [1]; DW Piping -2 [80] |  | ERECT | STRC | PEMB | ADMIN | N/A | GEN | CHI | 10 | CS | BLDG |
| BIM-01-AD-SUP-0030 |  | Erect Secondary Steel in Admin | 8d | 2020-05-29 | 2020-06-09 | BIM-01-AD-SUP-0020 SS+4d | 24d | 0d |  | 10 | ERECT | STRC | SECND | ADMIN | N/A | GEN | CHI | 10 | CS | BLDG |
| BIM-01-AD-SUP-0040 |  | Install Purlins in Admin | 8d | 2020-06-05 | 2020-06-16 | BIM-01-AD-SUP-0030 SS+5d | 24d | 0d | STRC - A - Purlins [1]; Work at Heights [1] |  | ERECT | STRC | SECND | ADMIN | N/A | GEN | CHI | 10 | CS | BLDG |
| BIM-01-AD-SUP-0050 |  | Erect Interior Steel in Admin | 3d | 2020-06-11 | 2020-06-15 | BIM-01-AD-SUP-0040 SS+4d | 24d | 0d | Work at Heights [1] |  | ERECT | STRC | SECND | ADMIN | N/A | GEN | CHI | 10 | CS | BLDG |
|  | 3 | **Slab on grade** |  | 2020-06-05 | 2020-06-29 |  |  |  |  |  |  |  |  |  |  |  |  |  |  |  |
| BIM-01-AD-SOG-0010 |  | Install Underground Sanitary and Vent Piping in Admin | 10d | 2020-06-05 | 2020-06-18 | BIM-01-01-FND-0020 | 24d | 0d | HRA ADMIN [100 h]; NPW Piping -1 [100] | 14 | INSTL | PLMB | PIPE | ADMIN | N/A | INT | CHI | 10 | CS | INTERIOR |
| BIM-01-AD-SOG-0020 |  | Place Base Course Aggregate in Admin | 5d | 2020-06-16 | 2020-06-22 | BIM-01-AD-SOG-0010 SS+7d, BIM-01-AD-SUP-0050 | 24d | 0d | Mobile Equipment [1]; Driving [1] | 4 | PLACE | STRC | SLABS | ADMIN | N/A | INT | CHI | 10 | CS | BLDG |
| BIM-01-AD-SOG-0030 |  | Construct Slab on Grade in Admin | 5d | 2020-06-23 | 2020-06-29 | BIM-01-AD-SOG-0020, BIM-01-AD-SOG-0020 SS+5d | 24d | 17d | Mobile Equipment [1]; Driving [1] | 10 | CNST | STRC | SLABS | ADMIN | N/A | INT | CHI | 10 | CS | BLDG |

Notes:
- BIM-01-S-LHP-0010: CHI10_Comments: match
- BIM-01-S-LHP-0020: CHI10_Comments: match
- BIM-01-S-LHP-0030: CHI10_Comments: match
- BIM-01-S-LHP-0040: CHI10_Comments: match
- BIM-01-S-LHP-0050: CHI10_Comments: Site in CHI10 includes areas for CHI11 and CHI12 - it's bigger
- BIM-01-S-LHP-0060: CHI10_Comments: absent in CHI10
- BIM-01-AD-FND-0010: CHI10_Comments: Duration in Structure was changed for smoother animation
- BIM-01-AD-FND-0020: CHI10_Comments: Total Foundations duration in CHI10 - 26 days
- BIM-01-AD-FND-0030: CHI10_Comments: match
- BIM-01-AD-SUP-0010: CHI10_Comments: match - Task was split fo animation as per clien't comments
- BIM-01-AD-SUP-0020: CHI10_Comments: Total Steel duration in CHI10 - 20 days
- BIM-01-AD-SUP-0030: CHI10_Comments: match
- BIM-01-AD-SUP-0040: CHI10_Comments: included in "Erect PEMB steel in Admin" in CHI10
- BIM-01-AD-SUP-0050: CHI10_Comments: absent in CHI10
- BIM-01-AD-SOG-0010: CHI10_Comments: match but there was several rough-in tasks in CHI10 and total duration is 46 days
- BIM-01-AD-SOG-0020: CHI10_Comments: match
- BIM-01-AD-SOG-0030: CHI10_Comments: match

| ID | WBS | Activity | Duration | Start | Finish | Predecessors | Total float | Free float | Resources | CHI10_Duration | ACTION | DISCIPLINE | SYSTEM | BUILDING SECTOR | BUILDING SUB-SECTOR | AREA | CAMPUS | BUILDING | PHASE | PART |
| --- | --- | --- | --- | --- | --- | --- | --- | --- | --- | --- | --- | --- | --- | --- | --- | --- | --- | --- | --- | --- |
|  | 2 | **Exterior Envelope** |  | 2020-07-23 | 2020-10-05 |  |  |  |  |  |  |  |  |  |  |  |  |  |  |  |
| BIM-01-AD-ENV-0010 |  | Install Exterior Insulated Metal Panels in Admin | 5d | 2020-07-23 | 2020-07-29 | BIM-01-01-SUP-0030, BIM-01-AD-SOG-0030 | 7d | 0d | Work at Heights [1]; Material Handling [1]; Lifting Operations [1] | 9 | INSTL | ARCH | IMP | ADMIN | N/A | GEN | CHI | 10 | CS | ENVLP |
| BIM-01-AD-ENV-0030 |  | Install Exterior Doors / Hardware in Admin | 5d | 2020-07-30 | 2020-08-05 | BIM-01-AD-ENV-0010 SS+5d | 23d | 0d | Material Handling [1] | 4 | INSTL | ARCH | DOOR | ADMIN | N/A | GEN | CHI | 10 | CS | ENVLP |
| BIM-01-AD-ENV-0040 |  | Install Exterior Windows in Admin | 3d | 2020-07-30 | 2020-08-03 | BIM-01-AD-ENV-0010 | 68d | 14d | Material Handling [1] | 4 | INSTL | ARCH | WIND | ADMIN | N/A | GEN | CHI | 10 | CS | ENVLP |
| BIM-01-AD-ENV-0020 |  | Install Roof Panels in Admin | 5d | 2020-08-06 | 2020-08-12 | BIM-01-AD-ENV-0010 SS+10d | 7d | 0d | Working from Heights ADMIN [50 h]; Work at Heights [1]; Material Handling [1]; Lifting Operations [1]; North-7 [50 h] | 7 | INSTL | ARCH | ROOF | ADMIN | N/A | GEN | CHI | 10 | CS | ENVLP |
| BIM-01-AD-ENV-0050 |  | Install Exterior Entrance in Admin | 2d | 2020-10-02 | 2020-10-05 | BIM-01-AD-ENV-0010, BIM-01-AD-CSA-0070 | 48d | 0d | Material Handling [1] | 5 | INSTL | ARCH | EXT | ADMIN | N/A | GEN | CHI | 10 | CS | ENVLP |
|  | 2 | **Colo 1** |  | 2020-05-13 | 2020-10-08 |  |  |  |  |  |  |  |  |  |  |  |  |  |  |  |
|  | 1 | **Structure** |  | 2020-05-13 | 2020-08-21 |  |  |  |  |  |  |  |  |  |  |  |  |  |  |  |
|  | 1 | **Foundations** |  | 2020-05-13 | 2020-06-29 |  |  |  |  |  |  |  |  |  |  |  |  |  |  |  |
| BIM-01-01-FND-0010 |  | Excavate/FRP Perimeter Foundations in Colo 1 | 16d | 2020-05-13 | 2020-06-03 | BIM-01-AD-FND-0010 SS, BIM-01-AD-FDN-0040 | 0d |  | Mobile Equipment - COLO 1 - Excavator - Perimeter [160 h]; Mobile Equipment - COLO 2 - Excavator - Perimeter [160 h]; Mobile Equipment [1]; Ground Disturbance [1]; HRA COLO 1 [160 h]; UG - 2 - Piping [160] | 8 | EXCAV | STRC | FND | COLO1 | N/A | GEN | CHI | 10 | CS | BLDG |
| BIM-01-01-FND-0020 |  | Waterproof/Backfill Perimeter Foundations in Colo 1 | 10d | 2020-05-22 | 2020-06-04 | BIM-01-01-FND-0010 SS+7d | 7d | 0d |  | 12 | WTP | STRC | FND | COLO1 | N/A | GEN | CHI | 10 | CS | BLDG |
| BIM-01-01-FND-0040 |  | Rough In Electrical UG | 10d | 2020-06-02 | 2020-06-15 | BIM-01-01-FND-0010 FS-2d, BIM-01-AD-FDN-0040 | 0d |  |  |  |  |  |  |  |  |  |  |  |  |  |
| BIM-01-01-FND-0030 |  | Excavate/FRP/Backfill Interior Column Footings in Colo 1 | 10d | 2020-06-16 | 2020-06-29 | BIM-01-01-FND-0020, BIM-01-01-FND-0010 SS, BIM-01-01-FND-0040 | 0d |  | Mobile Equipment [1]; Ground Disturbance [1] | 12 | EXCAV | STRC | FND | COLO1 | N/A | GEN | CHI | 10 | CS | BLDG |
|  | 2 | **Structural Steel and Decking** |  | 2020-06-30 | 2020-07-29 |  |  |  |  |  |  |  |  |  |  |  |  |  |  |  |
| BIM-01-01-SUP-0010 |  | Erect PEMB Columns in Colo 1 | 12d | 2020-06-30 | 2020-07-15 | BIM-01-01-FND-0030, BIM-01-AD-SUP-0010 | 0d |  | Lifting Operations [1]; Mobile Equipment [1] | 12 | ERECT | STRC | PEMB | COLO1 | N/A | GEN | CHI | 10 | CS | BLDG |
| BIM-01-01-SUP-0020 |  | Erect PEMB Joists in Colo 1 | 10d | 2020-07-09 | 2020-07-22 | BIM-01-01-SUP-0010 SS+7d | 0d |  | Mobile Equipment - COLO 1 - PEMB Crane [100 h]; Lifting Operations [0.67]; Mobile Equipment [0.67]; NPW Piping -2 [100] |  | ERECT | STRC | PEMB | COLO1 | N/A | GEN | CHI | 10 | CS | BLDG |
| BIM-01-01-SUP-0030 |  | Erect Secondary Steel in Colo 1 | 10d | 2020-07-09 | 2020-07-22 | BIM-01-01-SUP-0020 SS | 0d |  | Lifting Operations [0.67] | 12 | ERECT | STRC | SECND | COLO1 | N/A | GEN | CHI | 10 | CS | BLDG |
| BIM-01-01-SUP-0040 |  | Install Purlins in Colo 1 | 5d | 2020-07-16 | 2020-07-22 | BIM-01-01-SUP-0030 SS+5d | 0d |  | STRC - 1 - Purlins [0.33]; Work at Heights [0.33] |  | ERECT | STRC | SECND | COLO1 | N/A | GEN | CHI | 10 | CS | BLDG |
| BIM-01-01-SUP-0050 |  | Erect Interior Steel in Colo 1 | 5d | 2020-07-23 | 2020-07-29 | BIM-01-01-SUP-0030, BIM-01-01-SUP-0040 SS+5d | 0d |  | Work at Heights [0.25] | 20 | ERECT | STRC | SECND | COLO1 | N/A | GEN | CHI | 10 | CS | BLDG |
|  | 3 | **Slab on grade** |  | 2020-07-23 | 2020-08-21 |  |  |  |  |  |  |  |  |  |  |  |  |  |  |  |
| BIM-01-01-SOG-0010 |  | Install Underground Clear Water Discharge and Vent Piping in Colo 1 | 10d | 2020-07-23 | 2020-08-05 | BIM-01-S-UGU-0020, BIM-01-01-SUP-0020 | 0d |  | HRA COLO 1 [100 h]; UG - 2 - Piping [100] | 10 | INSTL | PLMB | PIPE | COLO1 | N/A | MECH_GAL | CHI | 10 | CS | INTERIOR |
| BIM-01-01-SOG-0020 |  | Place Base Course Aggregate in Colo 1 | 8d | 2020-07-31 | 2020-08-11 | BIM-01-01-SOG-0010 SS+6d, BIM-01-01-FND-F, BIM-01-SUM-FND | 0d |  | Mobile Equipment [0.53]; Driving [0.53] | 4 | PLACE | STRC | SLABS | COLO1 | N/A | INT | CHI | 10 | CS | BLDG |
| BIM-01-01-SOG-0030 |  | Construct Slab on Grade in Colo 1 | 15d | 2020-08-03 | 2020-08-21 | BIM-01-01-SOG-0020 SS+1d, BIM-01-01-FND-S, BIM-01-01-SUP-S | 0d |  | Mobile Equipment [1]; Driving [1] | 10 | CNST | STRC | SLABS | COLO1 | N/A | INT | CHI | 10 | CS | BLDG |
|  | 2 | **Exterior Envelope** |  | 2020-07-23 | 2020-10-08 |  |  |  |  |  |  |  |  |  |  |  |  |  |  |  |
| BIM-01-01-ENV-0010 |  | Install Exterior Insulated Metal Panels in Colo 1 | 35d | 2020-07-23 | 2020-09-09 | BIM-01-01-SUP-0040 | 9d | 0d | Work at Heights [2.33]; Material Handling [2.33]; Lifting Operations [2.33] | 15 | INSTL | ARCH | IMP | COLO1 | N/A | GEN | CHI | 10 | CS | ENVLP |
| BIM-01-01-ENV-0020 |  | Install Roof Panels in Colo 1 | 34d | 2020-08-24 | 2020-10-08 | BIM-01-AD-ENV-0020, BIM-01-01-ENV-0010 SS+10d, BIM-01-01-SOG-F | 0d |  | Working from Heights COLO 1 [340 h]; Work at Heights [2.27]; Material Handling [2.27]; Lifting Operations [2.27]; ARCH - 1 - Ceiling - Cell 4 - DH [340] | 7 | INSTL | ARCH | ROOF | COLO1 | N/A | GEN | CHI | 10 | CS | ENVLP |
| BIM-01-01-ENV-0030 |  | Install Exterior Doors / Hardware in Colo 1 | 5d | 2020-09-10 | 2020-09-16 | BIM-01-SUM-CS, BIM-01-01-ENV-0010 | 14d | 0d | Material Handling [0.33] | 6 | INSTL | ARCH | DOOR | COLO1 | N/A | GEN | CHI | 10 | CS | ENVLP |
| BIM-01-01-ENV-0040 |  | Construct Exterior Walkway in Colo 1 | 8d | 2020-09-10 | 2020-09-21 | BIM-01-01-ENV-0010 | 9d | 0d | Work at Heights [1]; Material Handling [1]; Lifting Operations [1] | 7 | INSTL | ARCH | EXT | COLO1 | N/A | GEN | CHI | 10 | CS | ENVLP |

Notes:
- BIM-01-AD-ENV-0010: CHI10_Comments: match
- BIM-01-AD-ENV-0030: CHI10_Comments: match
- BIM-01-AD-ENV-0040: CHI10_Comments: more windows in Ballard
- BIM-01-AD-ENV-0020: CHI10_Comments: match
- BIM-01-AD-ENV-0050: CHI10_Comments: match
- BIM-01-01-FND-0010: CHI10_Comments: more Perimeter Foundations in Ballard
- BIM-01-01-FND-0020: CHI10_Comments: match
- BIM-01-01-FND-0030: CHI10_Comments: match
- BIM-01-01-SUP-0010: CHI10_Comments: match - Task was split 4+8 for animation as per clien't comments
- BIM-01-01-SUP-0020: CHI10_Comments: absent in CHI10
- BIM-01-01-SUP-0030: CHI10_Comments: match
- BIM-01-01-SUP-0040: CHI10_Comments: included in "Erect PEMB steel in Colo1" in CHI10
- BIM-01-01-SUP-0050: CHI10_Comments: match
- BIM-01-01-SOG-0010: CHI10_Comments: was changed for animation
- BIM-01-01-SOG-0020: CHI10_Comments: was changed for animation
- BIM-01-01-SOG-0030: CHI10_Comments: match
- BIM-01-01-ENV-0010: CHI10_Comments: match
- BIM-01-01-ENV-0020: CHI10_Comments: match
- BIM-01-01-ENV-0030: CHI10_Comments: match
- BIM-01-01-ENV-0040: CHI10_Comments: match

| ID | WBS | Activity | Duration | Start | Finish | Predecessors | Total float | Free float | Resources | DISCIPLINE | SYSTEM | BUILDING SECTOR | BUILDING SUB-SECTOR | AREA | PHASE | ACTION | CAMPUS | BUILDING | PART | ASSEMBLY | CHI10_Duration |
| --- | --- | --- | --- | --- | --- | --- | --- | --- | --- | --- | --- | --- | --- | --- | --- | --- | --- | --- | --- | --- | --- |
|  | 3 | **Fitout** |  | 2020-07-30 | 2021-03-17 |  |  |  |  |  |  |  |  |  |  |  |  |  |  |  |  |
|  | 1 | **Admin** |  | 2020-07-30 | 2020-12-25 |  |  |  |  |  |  |  |  |  |  |  |  |  |  |  |  |
|  | 1 | **Interior Buildout** |  | 2020-07-30 | 2020-12-03 |  |  |  |  |  |  |  |  |  |  |  |  |  |  |  |  |
|  | 1 | **Ceiling/Partitions** |  | 2020-07-30 | 2020-09-24 |  |  |  |  |  |  |  |  |  |  |  |  |  |  |  |  |
| BIM-01-AD-CSA-0010 |  | MEP Rough-In / Wall & Ceiling in Admin | 15d | 2020-07-30 | 2020-08-19 | BIM-01-AD-ENV-0030 SS | 23d | 0d | Material Handling [0.75]; Work at Heights [0.75] | ARCH | PART | ADMIN | N/A | INT | FIT |  |  |  |  |  |  |
| BIM-01-AD-CSA-0020 |  | Frame Wall Partitions and Install Drywall Board in Admin | 15d | 2020-08-06 | 2020-08-26 | BIM-01-AD-CSA-0010 SS+5d | 23d | 0d | Material Handling [0.75] | ARCH | PART | ADMIN | N/A | INT | FIT |  |  |  |  |  |  |
| BIM-01-AD-CSA-0030 |  | Install Door Frames, Doors and Hardware in Admin | 5d | 2020-08-24 | 2020-08-28 | BIM-01-AD-CSA-0020 SS+12d, BIM-01-AD-ENV-0040 | 54d | 25d | Material Handling [0.33] | ARCH | DOOR | ADMIN | N/A | INT | FIT | INSTL | CHI | 10 | INTERIOR | SPEC |  |
| BIM-01-AD-CSA-0040 |  | Trim MEP systems in Admin | 5d | 2020-09-04 | 2020-09-10 | BIM-01-AD-CSA-0060 | 23d | 0d |  | ARCH | FLR | ADMIN | N/A | INT | FIT | SE | CHI | 10 | INTERIOR | EPOX |  |
| BIM-01-AD-CSA-0050 |  | Install Drop Ceiling in Admin | 15d | 2020-09-04 | 2020-09-24 | BIM-01-AD-CSA-0040 SS | 23d | 0d | Material Handling [0.43]; Work at Heights [0.43] | ARCH | CLNG | ADMIN | N/A | INT | FIT | INSTL | CHI | 10 | BLDG | SPEC |  |
|  | 2 | **Finishes** |  | 2020-08-21 | 2020-10-01 |  |  |  |  |  |  |  |  |  |  |  |  |  |  |  |  |
| BIM-01-AD-CSA-0060 |  | Paint Walls in Admin | 10d | 2020-08-21 | 2020-09-03 | BIM-01-AD-CSA-0020 SS+11d | 23d | 0d | Material Handling [0.5] | ARCH | PART | ADMIN | N/A | INT | FIT | TAPE | CHI | 10 | INTERIOR | FINSH |  |
| BIM-01-AD-CSA-0070 |  | Flooring in Admin | 10d | 2020-09-18 | 2020-10-01 | BIM-01-AD-CSA-0050 SS+10d | 23d | 0d | Material Handling [1] | ARCH | FLR | ADMIN | N/A | INT | FIT | SE | CHI | 10 | INTERIOR | EPOX |  |
|  | 3 | **FF&E** |  | 2020-10-02 | 2020-12-03 |  |  |  |  |  |  |  |  |  |  |  |  |  |  |  |  |
| BIM-01-AD-CSA-0080 |  | Install Office Equipment / Furniture in Admin | 45d | 2020-10-02 | 2020-12-03 | BIM-01-AD-CSA-0070 | 23d | 0d |  | ARCH | FRNTR | ADMIN | N/A | INT | FIT | INSTL | CHI | 10 | INTERIOR | SPEC |  |
|  | 2 | **Exterior MEP System** |  | 2020-08-17 | 2020-11-20 |  |  |  |  |  |  |  |  |  |  |  |  |  |  |  |  |
|  | 1 | **Mechanical** |  | 2020-08-31 | 2020-10-16 |  |  |  |  |  |  |  |  |  |  |  |  |  |  |  |  |
| BIM-01-AD-EXT-MECH-0010 |  | Place Mechanical Underground Rough-In for Admin | 10d | 2020-08-31 | 2020-09-11 | BIM-01-AD-EXT-ELEC-0010 | 48d | 0d | Ground Disturbance [1] | MECH | EQUIP | ADMIN | N/A | INT | FIT | INSTL | CHI | 10 | INTERIOR | N/A |  |
| BIM-01-AD-EXT-MECH-0020 |  | Build Mechanical Equipment Pads for Admin | 10d | 2020-09-07 | 2020-09-18 | BIM-01-AD-EXT-MECH-0010 SS+5d | 48d | 0d | Mobile Equipment [1]; Lifting Operations [1] | MECH | EQUIP | ADMIN | N/A | INT | FIT | INSTL | CHI | 10 | INTERIOR | N/A |  |
| BIM-01-AD-EXT-MECH-0030 |  | Install Steel Supports for Mechanical Equipment for Admin | 11d | 2020-09-15 | 2020-09-29 | BIM-01-AD-EXT-MECH-0020 SS+6d | 48d | 0d | Work at Heights [1] | MECH | EQUIP | ADMIN | N/A | INT | FIT | INSTL | CHI | 10 | INTERIOR | N/A |  |
| BIM-01-AD-EXT-MECH-0040 |  | Install Exterior Mechanical Equipment and Devices in Admin | 11d | 2020-09-25 | 2020-10-09 | BIM-01-AD-EXT-MECH-0030 SS+8d | 49d | 0d | MECH - A - ACC Unit [1]; Lifting Operations [1] | MECH | EQUIP | ADMIN | N/A | INT | FIT | INSTL | CHI | 10 | INTERIOR | N/A |  |
| BIM-01-AD-EXT-MECH-0050 |  | Install Exterior Mechanical Equipment Piping for Admin | 11d | 2020-10-02 | 2020-10-16 | BIM-01-AD-EXT-MECH-0040 SS+5d | 49d | 0d | Ground Disturbance [1]; Confined Space [1] | MECH | EQUIP | ADMIN | N/A | INT | FIT | INSTL | CHI | 10 | INTERIOR | N/A |  |
|  | 2 | **Electrical** |  | 2020-08-17 | 2020-10-12 |  |  |  |  |  |  |  |  |  |  |  |  |  |  |  |  |
| BIM-01-AD-EXT-ELEC-0010 |  | Rough-In Electrical in Admin | 10d | 2020-08-17 | 2020-08-28 | BIM-01-AD-ENV-0020 SS+7d, BIM-01-AD-FND-0010 | 7d | 0d | Electrical [1] | PLMB | PIPE | COLO1 | N/A | MECH_GAL | CS | INSTL | CHI | 10 | INTERIOR |  | 10 |
| BIM-01-AD-EXT-ELEC-0020 |  | Build Electrical Equipment Pads for Admin | 8d | 2020-08-25 | 2020-09-03 | BIM-01-AD-EXT-ELEC-0010 SS+6d | 25d | 0d | Mobile Equipment [0.73]; Electrical [0.73] | STRC | FND | ADMIN | N/A | GEN | CS | EXCAV | CHI | 10 | BLDG |  |  |
| BIM-01-AD-EXT-ELEC-0030 |  | Place UPM for Admin | 5d | 2020-09-03 | 2020-09-09 | BIM-01-AD-EXT-ELEC-0020 SS+7d | 83d | 0d | Lifting Operations [1]; Electrical [1] | ELEC | UPM | ADMIN | N/A | EXT | FIT |  |  |  |  |  |  |
| BIM-01-AD-EXT-ELEC-0040 |  | Place Transformer for Admin | 6d | 2020-09-10 | 2020-09-17 | BIM-01-AD-EXT-ELEC-0030 | 83d | 0d | Lifting Operations [1]; Electrical [1] | ELEC | XFMR | ADMIN | N/A | EXT | FIT |  |  |  |  |  |  |
| BIM-01-AD-EXT-ELEC-0060 |  | Pull Conductors from Transformer to MBS for Admin | 12d | 2020-09-10 | 2020-09-25 | BIM-01-AD-EXT-ELEC-0040 SS, BIM-01-AD-EXT-ELEC-0030 SS+4d | 89d | 0d | Electrical [1] | ELEC | MV_WIRE | SITE | N/A |  | SITE |  |  |  |  |  |  |
| BIM-01-AD-EXT-ELEC-0050 |  | Pull Conductors from UPM to Transformer for Admin | 12d | 2020-09-18 | 2020-10-05 | BIM-01-AD-EXT-ELEC-0040 | 83d | 0d | Electrical [1] | ELEC | MV_WIRE | SITE | N/A |  | SITE |  |  |  |  |  |  |
| BIM-01-AD-EXT-ELEC-0080 |  | Megger Conductors from Transformer to MBS for Admin | 1d | 2020-09-28 | 2020-09-28 | BIM-01-AD-EXT-ELEC-0060 | 89d | 0d | Electrical [1] | ELEC | MV_WIRE | SITE | N/A |  | SITE |  |  |  |  |  |  |
| BIM-01-AD-EXT-ELEC-0100 |  | Terminate Conductors from Transformer to MBS at Both Sides for Admin | 3d | 2020-09-29 | 2020-10-01 | BIM-01-AD-EXT-ELEC-0080 | 89d | 6d | Electrical [1] | ELEC | MV_WIRE | SITE | N/A |  | SITE |  |  |  |  |  |  |
| BIM-01-AD-EXT-ELEC-0070 |  | Megger Conductors from UPM to Transformer for Admin | 1d | 2020-10-06 | 2020-10-06 | BIM-01-AD-EXT-ELEC-0050 | 83d | 0d | Electrical [1] | ELEC | MV_WIRE | SITE | N/A |  | SITE |  |  |  |  |  |  |
| BIM-01-AD-EXT-ELEC-0090 |  | Terminate Conductors from UPM to Transformer at Both Sides for Admin | 3d | 2020-10-07 | 2020-10-09 | BIM-01-AD-EXT-ELEC-0070 | 83d | 0d | Electrical [1] | ELEC | MV_WIRE | SITE | N/A |  | SITE |  |  |  |  |  |  |
| BIM-01-AD-EXT-ELEC-0110 |  | Energize Admin Power Loop (UPM-Transformer-MBS) | 1d | 2020-10-12 | 2020-10-12 | BIM-01-S-UGE-0210, BIM-01-AD-EXT-ELEC-0090, BIM-01-AD-EXT-ELEC-0100 | 83d | 38d | Electrical [1] | ELEC | FDR | SITE | N/A | N | ENER | FEED | CHI | 10 | N/A | N/A |  |

Notes:
- BIM-01-AD-EXT-ELEC-0010: CHI10_Comments: was changed for animation
- BIM-01-AD-EXT-ELEC-0020: CHI10_Comments: Included in Exterior Electrical activities in Admin Fitout. Several separate tasks

| ID | WBS | Activity | Duration | Start | Finish | Predecessors | Total float | Free float | Resources | ACTION | DISCIPLINE | SYSTEM | BUILDING SECTOR | BUILDING SUB-SECTOR | AREA | CAMPUS | BUILDING | PHASE | PART | CHI10_Duration | CHI10_Comments | ASSEMBLY |
| --- | --- | --- | --- | --- | --- | --- | --- | --- | --- | --- | --- | --- | --- | --- | --- | --- | --- | --- | --- | --- | --- | --- |
|  | 3 | **Plumbing** |  | 2020-08-31 | 2020-09-25 |  |  |  |  |  |  |  |  |  |  |  |  |  |  |  |  |  |
| BIM-01-AD-EXT-PLMB-0010 |  | install IW/IWW/Sanitary/DW UG Piping for Admin | 10d | 2020-08-31 | 2020-09-11 | BIM-01-AD-EXT-MECH-0010 SS | 50d | 0d |  | INSTL | ARCH | ROOF | ADMIN | N/A | GEN | CHI | 10 | CS | ENVLP |  |  |  |
| BIM-01-AD-EXT-PLMB-0020 |  | Install Downspouts & Gutters in Admin | 10d | 2020-09-14 | 2020-09-25 | BIM-01-AD-EXT-PLMB-0010 | 50d | 2d | Work at Heights [0.91] | INSTL | ARCH | ROOF | ADMIN | N/A | GEN | CHI | 10 | CS | ENVLP | 8 | match |  |
|  | 4 | **Special Systems** |  | 2020-10-19 | 2020-11-20 |  |  |  |  |  |  |  |  |  |  |  |  |  |  |  |  |  |
| BIM-01-AD-EXT-SSYS-0010 |  | Install Fire Alarm System for Admin | 11d | 2020-10-19 | 2020-11-02 | BIM-01-AD-EXT-MECH-0050 | 56d | 0d | MECH - A - ACC Unit [1] | INSTL | MECH | EQUIP | ADMIN | N/A | INT | CHI | 10 | FIT | INTERIOR |  |  | N/A |
| BIM-01-AD-EXT-SSYS-0020 |  | Install Control System for Admin | 14d | 2020-11-03 | 2020-11-20 | BIM-01-AD-EXT-SSYS-0010 | 56d | 11d |  | INSTL | MECH | EQUIP | ADMIN | N/A | INT | CHI | 10 | FIT | INTERIOR |  |  | N/A |
|  | 3 | **Interior MEP Systems Buildout** |  | 2020-09-04 | 2020-12-01 |  |  |  |  |  |  |  |  |  |  |  |  |  |  |  |  |  |
|  | 1 | **Mechanical** |  | 2020-09-30 | 2020-11-12 |  |  |  |  |  |  |  |  |  |  |  |  |  |  |  |  |  |
| BIM-01-AD-INT-MECH-0010 |  | Install Interior Mechanical Equipment and Devices in Admin | 15d | 2020-09-30 | 2020-10-20 | BIM-01-AD-EXT-MECH-0030, BIM-01-AD-EXT-PLMB-0020 | 48d | 0d |  | INSTL | MECH | EQUIP | ADMIN | N/A | INT | CHI | 10 | FIT | INTERIOR |  |  | N/A |
| BIM-01-AD-INT-MECH-0020 |  | Install Interior Ductwork System and Supports in Admin | 12d | 2020-10-21 | 2020-11-05 | BIM-01-AD-INT-MECH-0010 | 48d | 0d |  | INSTL | MECH | DUCT | ADMIN | N/A | INT | CHI | 10 | FIT | INTERIOR |  |  | N/A |
| BIM-01-AD-INT-MECH-0030 |  | Install Interior Mechanical Piping and Supports in Admin | 5d | 2020-11-06 | 2020-11-12 | BIM-01-AD-INT-MECH-0020 | 48d | 0d |  | INSTL | MECH | PIPE | ADMIN | N/A | INT | CHI | 10 | FIT |  |  |  |  |
|  | 2 | **Electrical** |  | 2020-09-04 | 2020-11-12 |  |  |  |  |  |  |  |  |  |  |  |  |  |  |  |  |  |
| BIM-01-AD-INT-ELEC-0010 |  | Install Communications/Electrical Conduit in Admin | 5d | 2020-09-04 | 2020-09-10 | BIM-01-AD-EXT-ELEC-0020 | 25d | 0d | Electrical [1]; Work at Heights [1] | INSTL | ELEC | COND | ADMIN | N/A | INT | CHI | 10 | FIT |  |  |  |  |
| BIM-01-AD-INT-ELEC-0100 |  | Install Steel Supports for OH Conductors and Cabel Trays for Admin | 11d | 2020-09-04 | 2020-09-18 | BIM-01-AD-EXT-ELEC-0020 | 84d | 36d | Electrical [1]; Work at Heights [1] | EXCAV | STRC | FND | ADMIN | N/A | GEN | CHI | 10 | CS | BLDG |  |  |  |
| BIM-01-AD-INT-ELEC-0020 |  | Install Communications/Electrical Cable Tray in Admin | 5d | 2020-09-11 | 2020-09-17 | BIM-01-AD-INT-ELEC-0010 | 25d | 0d | Electrical [1]; Work at Heights [1] | INSTL | ELEC | CTRAY | ADMIN | N/A | INT | CHI | 10 | FIT | INTERIOR |  |  |  |
| BIM-01-AD-INT-ELEC-0030 |  | Install Electrical Equipment in Admin | 21d | 2020-09-18 | 2020-10-16 | BIM-01-AD-INT-ELEC-0020 | 25d | 0d | Electrical [1] | INSTL | ELEC | EQUIP | ADMIN | N/A | INT | CHI | 10 | FIT | N/A |  |  |  |
| BIM-01-AD-INT-ELEC-0040 |  | Install Electrical Devices in Admin | 6d | 2020-10-19 | 2020-10-26 | BIM-01-AD-INT-ELEC-0030 | 48d | 0d | Electrical [1] | INSTL | ELEC | EQUIP | ADMIN | N/A | INT | CHI | 10 | FIT | N/A |  |  |  |
| BIM-01-AD-INT-ELEC-0050 |  | Install and Wire Lighting Fixtures in Admin | 6d | 2020-10-27 | 2020-11-03 | BIM-01-AD-INT-ELEC-0040 | 48d | 0d | Electrical [1] | INSTL | ELEC | LTNG | ADMIN | N/A | DH | CHI | 10 | FIT | INTERIOR |  |  |  |
| BIM-01-AD-INT-ELEC-0060 |  | Install Grounding and Bonding System in Admin | 3d | 2020-11-04 | 2020-11-06 | BIM-01-AD-INT-ELEC-0050 | 52d | 4d | Electrical [1] | INSTL | ELEC | GRND | ADMIN | N/A | INT | CHI | 10 | FIT |  |  |  |  |
| BIM-01-AD-INT-ELEC-0070 |  | Pull Conductors for Electrical/Mechanical equipment in Admin | 3d | 2020-11-04 | 2020-11-06 | BIM-01-AD-INT-ELEC-0050 | 48d | 0d | Electrical [1] | TERM | ELEC | FDR | ADMIN | N/A | INT | CHI | 10 | FIT | INTERIOR |  |  |  |
| BIM-01-AD-INT-ELEC-0080 |  | Megger Conductors for Electrical/Mechanical equipment in Admin | 1d | 2020-11-09 | 2020-11-09 | BIM-01-AD-INT-ELEC-0070 | 48d | 0d | Electrical [1] | TERM | ELEC | FDR | ADMIN | N/A | INT | CHI | 10 | FIT | INTERIOR |  |  |  |
| BIM-01-AD-INT-ELEC-0090 |  | Terminate Conductors for Electrical/Mechanical equipment on both sides in Admin | 3d | 2020-11-10 | 2020-11-12 | BIM-01-AD-INT-ELEC-0080, BIM-01-AD-INT-ELEC-0100 | 48d | 0d | Electrical [1] | TERM | ELEC | FDR | ADMIN | N/A | INT | CHI | 10 | FIT | INTERIOR |  |  |  |
|  | 3 | **Plumbing** |  | 2020-10-19 | 2020-12-01 |  |  |  |  |  |  |  |  |  |  |  |  |  |  |  |  |  |
| BIM-01-AD-INT-PLMB-0010 |  | Install Domestic Water Piping in Admin | 16d | 2020-10-19 | 2020-11-09 | BIM-01-AD-CSA-0020, BIM-01-AD-EXT-MECH-0050 | 49d | 0d |  | INSTL | PLMB | PIPE | ADMIN | N/A | INT | CHI | 10 | FIT | INTERIOR |  |  |  |
| BIM-01-AD-INT-PLMB-0020 |  | Install Sanitary and Vent Piping in Admin | 6d | 2020-10-19 | 2020-10-26 | BIM-01-AD-INT-PLMB-0010 SS | 59d | 10d |  | INSTL | PLMB | PIPE | ADMIN | N/A | INT | CHI | 10 | FIT |  |  |  |  |
| BIM-01-AD-INT-PLMB-0030 |  | Install and Connect Plumbing Equipment and Fixtures in Admin | 16d | 2020-11-10 | 2020-12-01 | BIM-01-AD-INT-PLMB-0010, BIM-01-AD-INT-PLMB-0020 | 49d | 4d |  | INSTL | PLMB | PFIX | ADMIN | N/A | INT | CHI | 10 | FIT | INTERIOR |  |  |  |

| ID | WBS | Activity | Duration | Start | Finish | Predecessors | Total float | Free float | Resources | ACTION | DISCIPLINE | SYSTEM | BUILDING SECTOR | BUILDING SUB-SECTOR | AREA | CAMPUS | BUILDING | PHASE | PART | ASSEMBLY |
| --- | --- | --- | --- | --- | --- | --- | --- | --- | --- | --- | --- | --- | --- | --- | --- | --- | --- | --- | --- | --- |
|  | 4 | **Fire Protection** |  | 2020-10-22 | 2020-11-04 |  |  |  |  |  |  |  |  |  |  |  |  |  |  |  |
| BIM-01-AD-INT-FP-0010 |  | Install Fire Protection System in Admin | 10d | 2020-10-22 | 2020-11-04 | BIM-01-AD-INT-PLMB-0010 SS+3d | 68d | 23d | FPRT - A - Fire Protection System [1] | INSTL | FP | PIPE | ADMIN | N/A | INT | CHI | 10 | FIT | INTERIOR |  |
|  | 5 | **Telecommunication** |  | 2020-10-19 | 2020-11-06 |  |  |  |  |  |  |  |  |  |  |  |  |  |  |  |
| BIM-01-AD-INT-TCOM-0010 |  | Install Telecommunication Fiber and Copper Wires in Admin | 10d | 2020-10-19 | 2020-10-30 | BIM-01-AD-INT-ELEC-0020, BIM-01-AD-INT-ELEC-0030, BIM-01-S-UGU-0060 | 61d | 0d |  | TERM | TELECOM | WIRE | ADMIN | N/A | DH | CHI | 10 | FIT | INTERIOR |  |
| BIM-01-AD-INT-TCOM-0020 |  | Install Telecommunication Equipment and Devices in Admin | 10d | 2020-10-26 | 2020-11-06 | BIM-01-AD-INT-TCOM-0010 SS+5d | 61d | 0d |  | INSTL | TELECOM | FIBER | ADMIN | N/A | DH | CHI | 10 | FIT | INTERIOR |  |
|  | 6 | **Fire Alarm** |  | 2020-10-19 | 2020-10-30 |  |  |  |  |  |  |  |  |  |  |  |  |  |  |  |
| BIM-01-AD-INT-FA-0010 |  | Install Fire Alarm System in Admin | 10d | 2020-10-19 | 2020-10-30 | BIM-01-AD-INT-TCOM-0010 SS | 71d | 26d | Electrical [1] | INSTL | FA | SYS | ADMIN | N/A | INT | CHI | 10 | FIT | BLDG | SPEC |
|  | 7 | **Security** |  | 2020-11-02 | 2020-11-13 |  |  |  |  |  |  |  |  |  |  |  |  |  |  |  |
| BIM-01-AD-INT-SEC-0010 |  | Install Access Control and CCTV in Admin | 10d | 2020-11-02 | 2020-11-13 | BIM-01-AD-INT-TCOM-0010 | 61d | 16d | Electrical [1] | INSTL | FA | SYS | ADMIN | N/A | INT | CHI | 10 | FIT |  | SPEC |
|  | 8 | **BAS** |  | 2020-11-09 | 2020-11-20 |  |  |  |  |  |  |  |  |  |  |  |  |  |  |  |
| BIM-01-AD-INT-CTRL-0010 |  | Install BAS/Control Systems in Admin | 10d | 2020-11-09 | 2020-11-20 | BIM-01-AD-INT-TCOM-0020 | 61d | 16d | CTRL - A - Equipment and Devices [1]; Electrical [1] | INSTL | SEC | DEV | ADMIN | N/A | INT | CHI | 10 | FIT | BLDG | SPEC |
|  | 4 | **Commissioning** |  | 2020-10-19 | 2020-12-25 |  |  |  |  |  |  |  |  |  |  |  |  |  |  |  |
|  | 1 | **Level 1 - Cx Admin** |  | 2020-10-19 | 2020-10-27 |  |  |  |  |  |  |  |  |  |  |  |  |  |  |  |
| BIM-01-AD-L1CX-0020 |  | Red Tag Interior Equipment in Admin | 4d | 2020-10-19 | 2020-10-22 | BIM-01-AD-EXT-ELEC-0030, BIM-01-AD-INT-ELEC-0030 | 63d | 15d |  | TAG | GEN | GEN | ADMIN | N/A | GEN | CHI | 10 | LVL1 | N/A |  |
| BIM-01-AD-L1CX-0010 |  | Red Tag Exterior Equipment in Admin | 4d | 2020-10-22 | 2020-10-27 | BIM-01-AD-INT-ELEC-0030 FS+3d | 60d | 12d |  | TAG | GEN | GEN | ADMIN | N/A | GEN | CHI | 10 | LVL1 | N/A |  |
|  | 2 | **Level 2 - Cx Admin** |  | 2020-11-13 | 2020-11-30 |  |  |  |  |  |  |  |  |  |  |  |  |  |  |  |
| BIM-01-AD-L2CX-0010 |  | Perform Quality Control Pre Start Up Checks in Admin | 10d | 2020-11-13 | 2020-11-26 | BIM-01-AD-L1CX-0010, BIM-01-AD-INT-MECH-0010, BIM-01-AD-INT-MECH-0020, BIM-01-AD-INT-MECH-0030, BIM-01-AD-INT-ELEC-0060, BIM-01-AD-L1CX-0020, BIM-01-AD-INT-ELEC-0090 | 48d | 0d |  | PRFRM | GEN | GEN | ADMIN | N/A | GEN | CHI | 10 | LVL2 | N/A |  |
| BIM-01-AD-L2CX-0020 |  | Yellow Tag Equipment in Admin | 1d | 2020-11-27 | 2020-11-27 | BIM-01-AD-L2CX-0010 | 48d | 0d |  | TAG | GEN | GEN | ADMIN | N/A | GEN | CHI | 10 | LVL2 |  |  |
| BIM-01-AD-L2CX-0030 |  | Energize Equipment in Admin | 1d | 2020-11-30 | 2020-11-30 | BIM-01-AD-L2CX-0020 | 48d | 3d |  | ENER | GEN | GEN | ADMIN | N/A | GEN | CHI | 10 | LVL2 | N/A |  |
|  | 3 | **Level 3 - Cx Admin** |  | 2020-12-04 | 2020-12-25 |  |  |  |  |  |  |  |  |  |  |  |  |  |  |  |
| BIM-01-AD-L3CX-0010 |  | Perform OFCI and CFCI Equipment Lvl 3 Start Up Checks in Admin | 2d | 2020-12-04 | 2020-12-07 | BIM-01-AD-L2CX-0030, BIM-01-S-UGE-0200, BIM-01-AD-CSA-0080, BIM-01-AD-EXT-ELEC-0110 | 45d | 0d |  | PRFRM | GEN | GEN | ADMIN | N/A | GEN | CHI | 10 | LVL3 | N/A |  |
| BIM-01-AD-L3CX-0020 |  | Perform Site Start Up / Site Acceptance Testing in Admin | 5d | 2020-12-08 | 2020-12-14 | BIM-01-AD-L3CX-0010, BIM-01-AD-INT-PLMB-0030, BIM-01-AD-INT-FA-0010, BIM-01-AD-INT-FP-0010, BIM-01-AD-INT-SEC-0010, BIM-01-AD-EXT-SSYS-0020 | 45d | 0d |  | PRFRM | GEN | GEN | ADMIN | N/A | GEN | CHI | 10 | LVL3 | N/A |  |
| BIM-01-AD-L3CX-0030 |  | Perform BAS Lvl3 Start Up Checks in Admin | 2d | 2020-12-15 | 2020-12-16 | BIM-01-AD-L3CX-0020, BIM-01-AD-INT-CTRL-0010 | 45d | 0d |  | PRFRM | GEN | GEN | ADMIN | N/A | GEN | CHI | 10 | LVL3 | N/A |  |
| BIM-01-AD-L3CX-0040 |  | Perform EPMS Start Up Checks in Admin | 2d | 2020-12-17 | 2020-12-18 | BIM-01-AD-L3CX-0030 | 45d | 0d |  | PRFRM | GEN | GEN | ADMIN | N/A | GEN | CHI | 10 | LVL3 | N/A |  |
| BIM-01-AD-L3CX-0050 |  | Green Tag Equipment in Admin | 5d | 2020-12-21 | 2020-12-25 | BIM-01-AD-L3CX-0040, BIM-01-AD-CSA-0080 | 45d |  |  | TAG | GEN | GEN | ADMIN | N/A | GEN | CHI | 10 | LVL3 | N/A |  |

| ID | WBS | Activity | Duration | Start | Finish | Predecessors | Total float | Free float | Resources | ACTION | DISCIPLINE | SYSTEM | BUILDING SECTOR | BUILDING SUB-SECTOR | AREA | CAMPUS | BUILDING | PHASE | ASSEMBLY | PART | CHI10_Comments |
| --- | --- | --- | --- | --- | --- | --- | --- | --- | --- | --- | --- | --- | --- | --- | --- | --- | --- | --- | --- | --- | --- |
|  | 2 | **Colo 1** |  | 2020-07-30 | 2021-03-17 |  |  |  |  |  |  |  |  |  |  |  |  |  |  |  |  |
|  | 1 | **Interior Buildout** |  | 2020-07-30 | 2020-11-05 |  |  |  |  |  |  |  |  |  |  |  |  |  |  |  |  |
|  | 1 | **Data Hall** |  | 2020-07-30 | 2020-11-05 |  |  |  |  |  |  |  |  |  |  |  |  |  |  |  |  |
|  | 1 | **Ceiling/Partitions** |  | 2020-07-30 | 2020-10-16 |  |  |  |  |  |  |  |  |  |  |  |  |  |  |  |  |
| BIM-01-01-DH-CSA-0010 |  | Overhead MEP Rough-In in Data Hall Colo 1 | 15d | 2020-07-30 | 2020-08-19 | BIM-01-01-SUP-0050 | 0d |  |  | FRAME | ARCH | PART | COLO1 | N/A | DH | CHI | 10 | FIT | PART |  |  |
| BIM-01-01-DH-CSA-0020 |  | MEP Rough-In / Wall & Ceiling in Data Hall Colo 1 | 10d | 2020-08-20 | 2020-09-02 | BIM-01-01-DH-CSA-0010 | 0d |  | Work at Heights [1]; Material Handling [1] | FRAME | ARCH | PART | COLO1 | N/A | DH | CHI | 10 | FIT | PART |  |  |
| BIM-01-01-DH-CSA-0030 |  | Frame Wall Partitions and Install Drywall Board in Data Hall Colo 1 | 15d | 2020-09-03 | 2020-09-23 | BIM-01-01-SOG-0030, BIM-01-01-DH-CSA-0020 | 0d |  | Material Handling [1] | FRAME | ARCH | PART | COLO1 | N/A | DH | CHI | 10 | FIT | PART |  |  |
| BIM-01-01-DH-CSA-0050 |  | Install Drop Ceiling in Data Hall Colo 1 | 10d | 2020-09-10 | 2020-09-23 | BIM-01-01-DH-CSA-0030 SS+5d | 67d | 24d | ARCH - 1 - Ceiling [1]; Material Handling [1]; Work at Heights [1]; Mobile Equipment [1] | INSTL | ARCH | CLNG | COLO1 | N/A | DH | CHI | 10 | FIT | SPEC |  |  |
| BIM-01-01-DH-CSA-0040 |  | Install Door Frames, Doors and Hardware in Data Hall Colo 1 | 10d | 2020-10-05 | 2020-10-16 | BIM-01-01-DH-CSA-0030 SS+5d, BIM-01-01-DRY-F, BIM-01-AD-CSA-0030 | 29d | 0d | Material Handling [1]; Mobile Equipment [1] | INSTL | ARCH | DOOR | COLO1 | N/A | DH | CHI | 10 | FIT | PART | INTERIOR |  |
|  | 2 | **Finishes** |  | 2020-10-19 | 2020-11-05 |  |  |  |  |  |  |  |  |  |  |  |  |  |  |  |  |
| BIM-01-01-DH-CSA-0060 |  | Paint Walls in Data Hall Colo 1 | 7d | 2020-10-19 | 2020-10-27 | BIM-01-01-DH-CSA-0030, BIM-01-01-DH-CSA-0040 | 29d | 0d | Material Handling [1] | PAINT | ARCH | PART | COLO1 | N/A | DH | CHI | 10 | FIT | FINSH | INTERIOR |  |
| BIM-01-01-DH-CSA-0070 |  | Flooring in Data Hall Colo 1 | 7d | 2020-10-28 | 2020-11-05 | BIM-01-01-DH-CSA-0050, BIM-01-01-DH-CSA-0060 | 43d | 20d | Material Handling [1] | SE | ARCH | FLR | COLO1 | N/A | DH | CHI | 10 | FIT | EPOX | INTERIOR |  |
|  | 2 | **Mechanical Gallery** |  | 2020-07-30 | 2020-10-29 |  |  |  |  |  |  |  |  |  |  |  |  |  |  |  |  |
|  | 1 | **Ceiling/Partitions** |  | 2020-07-30 | 2020-10-21 |  |  |  |  |  |  |  |  |  |  |  |  |  |  |  |  |
| BIM-01-01-MG-CSA-0010 |  | Overhead MEP Rough-In in Mechanical Gallery Colo 1 | 20d | 2020-07-30 | 2020-08-26 | BIM-01-01-DH-CSA-0010 SS | 43d | 0d |  | FRAME | ARCH | PART | COLO1 | N/A | DH | CHI | 10 | FIT | PART |  |  |
| BIM-01-01-MG-CSA-0020 |  | MEP Rough-In / Wall & Ceiling in Mechanical Gallery Colo 1 | 20d | 2020-07-30 | 2020-08-26 | BIM-01-01-MG-CSA-0010 SS | 43d | 10d |  | FRAME | ARCH | PART | COLO1 | N/A | DH | CHI | 10 | FIT | PART |  |  |
| BIM-01-01-MG-CSA-0030 |  | Frame Wall Partitions and Install Drywall Board in Mechanical Gallery Colo 1 | 20d | 2020-09-10 | 2020-10-07 | BIM-01-01-DH-CSA-0030 SS+5d, BIM-01-01-MG-CSA-0020 | 33d | 0d | Material Handling [1] | FRAME | ARCH | PART | COLO1 | N/A | DH | CHI | 10 | FIT | PART |  |  |
| BIM-01-01-MG-CSA-0040 |  | Install Door Frames, Doors and Hardware in Mechanical Gallery Colo 1 | 15d | 2020-09-17 | 2020-10-07 | BIM-01-01-MG-CSA-0030 SS+5d | 49d | 0d | Material Handling [1] | INSTL | ARCH | DOOR | COLO1 | N/A | DH | CHI | 10 | FIT | PART | INTERIOR |  |
| BIM-01-01-MG-CSA-0050 |  | Install Drop Ceiling in Mechanical Gallery Colo 1 | 15d | 2020-10-01 | 2020-10-21 | BIM-01-01-MG-CSA-0030 SS+5d, BIM-01-01-MG-CSA-0040 FS-5d | 49d | 1d | Material Handling [1]; Work at Heights [1] | INSTL | ARCH | CLNG | COLO1 | N/A | DH | CHI | 10 | FIT | SPEC |  |  |
|  | 2 | **Finishes** |  | 2020-10-01 | 2020-10-29 |  |  |  |  |  |  |  |  |  |  |  |  |  |  |  |  |
| BIM-01-01-MG-CSA-0060 |  | Paint Walls in Mechanical Gallery Colo 1 | 11d | 2020-10-01 | 2020-10-15 | BIM-01-01-MG-CSA-0030 SS+15d | 48d | 0d | Material Handling [1] | PAINT | ARCH | PART | COLO1 | N/A | DH | CHI | 10 | FIT | FINSH | INTERIOR |  |
| BIM-01-01-MG-CSA-0070 |  | Flooring in Mechanical Gallery Colo 1 | 10d | 2020-10-16 | 2020-10-29 | BIM-01-01-MG-CSA-0060, BIM-01-01-MG-CSA-0050 SS+10d, BIM-01-01-MG-CSA-0040, BIM-01-01-MG-CSA-0030 | 48d | 25d | Material Handling [1] | SE | ARCH | FLR | COLO1 | N/A | DH | CHI | 10 | FIT | EPOX | INTERIOR |  |
|  | 2 | **Exterior MEP Systems Buildout** |  | 2020-08-20 | 2020-12-07 |  |  |  |  |  |  |  |  |  |  |  |  |  |  |  |  |
|  | 1 | **Mechanical** |  | 2020-09-17 | 2020-11-03 |  |  |  |  |  |  |  |  |  |  |  |  |  |  |  |  |
| BIM-01-01-EXT-MECH-0010 |  | Install Exterior Outside Air Louvers/Dampers in Colo 1 | 14d | 2020-09-17 | 2020-10-06 | BIM-01-01-ENV-0030, BIM-01-01-ENV-0010 | 14d |  | Work at Heights [1] | CONNECT | MECH | DUCT | COLO1 | N/A | EXT | CHI | 10 | FIT |  | N/A |  |
| BIM-01-01-EXT-MECH-0020 |  | Build Mechanical Equipment Pads for Colo 1 | 1d | 2020-09-22 | 2020-09-22 | BIM-01-01-EXT-ELEC-0020 SS+5d, BIM-01-01-ENV-0040 | 9d | 0d | Mobile Equipment [0.5]; Lifting Operations [0.5]; Ground Disturbance [0.5] |  | SCRT | PADS | SITE | N/A | N/A |  |  | SITE |  |  | absent in CHI10 |
| BIM-01-01-EXT-MECH-0030 |  | Install Exterior Mechanical Equipment in Colo 1 | 4d | 2020-09-23 | 2020-09-28 | BIM-01-01-EXT-MECH-0020 | 9d | 0d | Lifting Operations [1]; Mobile Equipment [1]; Ground Disturbance [1] | INSTL | MECH | EQUIP | COLO1 | N/A | INT | CHI | 10 | FIT | N/A | INTERIOR |  |
| BIM-01-01-EXT-MECH-0040 |  | Install Exterior Mechanical Piping and Supports in Colo 1 | 30d | 2020-09-23 | 2020-11-03 | BIM-01-01-EXT-MECH-0030 SS | 13d |  | Ground Disturbance [7.5] | INSTL | MECH | PIPE | COLO1 | N/A | INT | CHI | 10 | FIT |  |  |  |

| ID | WBS | Activity | Duration | Start | Finish | Predecessors | Total float | Free float | Constraint | Calendar | Resources | DISCIPLINE | SYSTEM | BUILDING SECTOR | BUILDING SUB-SECTOR | PHASE | CHI10_Duration | CHI10_Comments | ACTION | AREA | CAMPUS | BUILDING | PART | ASSEMBLY |
| --- | --- | --- | --- | --- | --- | --- | --- | --- | --- | --- | --- | --- | --- | --- | --- | --- | --- | --- | --- | --- | --- | --- | --- | --- |
|  | 2 | **Electrical** |  | 2020-08-20 | 2020-12-07 |  |  |  |  |  |  |  |  |  |  |  |  |  |  |  |  |  |  |  |
| BIM-01-01-EXT-ELEC-0290 |  | Install Steel Supports for OH Conductors and Cabel Trays for Colo 1 | 40d | 2020-08-20 | 2020-10-14 | BIM-01-01-DH-CSA-0010 | 52d |  |  |  | Electrical [1] | ELEC | MV_WIRE | SITE | N/A | SITE |  |  |  |  |  |  |  |  |
| BIM-01-01-EXT-ELEC-0010 |  | Rough-In Electrical in Colo 1 | 20d | 2020-08-21 | 2020-09-17 | BIM-01-AD-EXT-ELEC-0010 SS+4d, BIM-01-01-FND-0040 | 15d | 0d |  |  | Ground Disturbance [0.67]; Electrical [0.67] | PLMB | PIPE | COLO1 | N/A | CS | 10 | was changed for animation | INSTL | MECH_GAL | CHI | 10 | INTERIOR |  |
| BIM-01-01-EXT-ELEC-0020 |  | Build Electrical Equipment Pads for Colo 1 | 15d | 2020-08-31 | 2020-09-18 | BIM-01-AD-EXT-ELEC-0010, BIM-01-01-FND-0030 | 7d | 0d |  |  | Ground Disturbance [1]; Electrical [1] | SCRT | PADS | SITE | N/A | SITE |  | absent in CHI10 |  | N/A |  |  |  |  |
| BIM-01-01-EXT-ELEC-0030 |  | Place UMS01 on Site | 4d | 2020-09-15 | 2020-09-18 | BIM-01-AD-EXT-ELEC-0020 SS+15d | 78d | 0d |  |  | Lifting Operations [1] | ELEC | UMS | SITE | N/A | SITE |  | Different set of activities. can't be directly compared. |  |  |  |  |  |  |
| BIM-01-01-EXT-ELEC-0040 |  | Place UMS02 on Site | 4d | 2020-09-16 | 2020-09-21 | BIM-01-01-EXT-ELEC-0030 SS+1d | 83d | 0d |  |  | Lifting Operations [1] | ELEC | UMS | SITE | N/A | SITE |  | All site electrical activities in CHI10 - 89 days |  |  |  |  |  |  |
| BIM-01-01-EXT-ELEC-0110 |  | Receive Generators for Colo 1 CELL1 | 3d | 2020-09-20 | 2020-09-21 | BIM-01-01-EXT-ELEC-0020 | 30d | 0d | as late as possible | 24/7 | Lifting Operations [1]; ELEC - 1 - Cell 2 - Busway [24] | ELEC |  | COLO1 | CELL1 | FIT |  |  |  |  |  |  |  |  |
| BIM-01-01-EXT-ELEC-0070 |  | Place Transformers for Colo 1 CELL1 | 3d | 2020-09-21 | 2020-09-23 | BIM-01-01-EXT-ELEC-0120 SS | 47d | 12d |  |  | Lifting Operations [1] | ELEC |  | COLO1 | CELL1 | FIT |  |  |  |  |  |  |  |  |
| BIM-01-01-EXT-ELEC-0120 |  | Place Generators for Colo 1 CELL1 | 3d | 2020-09-21 | 2020-09-23 | BIM-01-01-EXT-ELEC-0110 | 8d | 0d |  |  | Crane - Base [30 h]; Crane - Boom - Extension [30 h]; Crane - Boom [30 h]; Truck and Semitrailer [30 h]; Cones [30 h]; Lifting Operations [1]; ELEC - 1 - Cell 2 - Busway [30] | ELEC |  | COLO1 | CELL1 | FIT |  |  |  |  |  |  |  |  |
| BIM-01-01-EXT-ELEC-0130 |  | Receive Generators for Colo 1 CELL2 | 3d | 2020-09-24 | 2020-09-25 | BIM-01-01-EXT-ELEC-0120 | 36d | 0d | as late as possible | 24/7 | Lifting Operations [1]; Driving - Round Loop [24 h] | ELEC |  | COLO1 | CELL2 | FIT |  |  |  |  |  |  |  |  |
| BIM-01-01-EXT-ELEC-0140 |  | Place Generators for Colo 1 CELL2 | 3d | 2020-09-25 | 2020-09-29 | BIM-01-01-EXT-ELEC-0130 | 8d | 0d |  |  | Cones [30 h]; Lifting Operations [1]; Driving - Round Loop [30 h] | ELEC |  | COLO1 | CELL2 | FIT |  |  |  |  |  |  |  |  |
| BIM-01-01-EXT-ELEC-0080 |  | Place Transformers for Colo 1 CELL2 | 3d | 2020-09-30 | 2020-10-02 | BIM-01-01-EXT-ELEC-0140 | 40d | 5d |  |  | Lifting Operations [1] | ELEC |  | COLO1 | CELL2 | FIT |  |  |  |  |  |  |  |  |
| BIM-01-01-EXT-ELEC-0150 |  | Receive Generators for Colo 1 CELL3 | 3d | 2020-09-30 | 2020-10-01 | BIM-01-01-EXT-ELEC-0140 | 33d | 0d | as late as possible | 24/7 | Lifting Operations [1]; ELEC - 1 - Cell 2 - Busway [24] | ELEC |  | COLO1 | CELL3 | FIT |  |  |  |  |  |  |  |  |
| BIM-01-01-EXT-ELEC-0050 |  | Place UPM for Colo 1 CELL3 | 3d | 2020-10-01 | 2020-10-05 | BIM-01-01-EXT-ELEC-0090 SS, BIM-01-01-ROJ-S | 77d | 4d |  |  | Lifting Operations [1] | ELEC |  | COLO1 | CELL3 | FIT |  |  |  |  |  |  |  |  |
| BIM-01-01-EXT-ELEC-0090 |  | Place Transformers for Colo 1 CELL3 | 3d | 2020-10-01 | 2020-10-05 | BIM-01-01-EXT-ELEC-0160 SS | 39d | 0d |  |  | Lifting Operations [1] | ELEC |  | COLO1 | CELL3 | FIT |  |  |  |  |  |  |  |  |
| BIM-01-01-EXT-ELEC-0160 |  | Place Generators for Colo 1 CELL3 | 3d | 2020-10-01 | 2020-10-05 | BIM-01-01-EXT-ELEC-0150 | 7d | 0d |  |  | Cones [30 h]; Lifting Operations [1]; ELEC - 1 - Cell 2 - Busway [30] | ELEC |  | COLO1 | CELL3 | FIT |  |  |  |  |  |  |  |  |
| BIM-01-01-EXT-ELEC-0170 |  | Receive Generators for Colo 1 CELL4 | 3d | 2020-10-06 | 2020-10-07 | BIM-01-01-EXT-ELEC-0160 | 27d | 0d | as late as possible | 24/7 | Lifting Operations [1]; Driving - Round Loop [24 h] | ELEC |  | COLO1 | CELL4 | FIT |  |  |  |  |  |  |  |  |
| BIM-01-01-EXT-ELEC-0060 |  | Place UPM for Colo 1 CELL4 | 3d | 2020-10-07 | 2020-10-09 | BIM-01-01-EXT-ELEC-0100 SS | 73d | 0d |  |  | Lifting Operations [1] | ELEC |  | COLO1 | CELL4 | FIT |  |  |  |  |  |  |  |  |
| BIM-01-01-EXT-ELEC-0100 |  | Place Transformers for Colo 1 CELL4 | 3d | 2020-10-07 | 2020-10-09 | BIM-01-01-EXT-ELEC-0180 SS | 35d | 0d |  |  | Lifting Operations [1] | ELEC |  | COLO1 | CELL4 | FIT |  |  |  |  |  |  |  |  |
| BIM-01-01-EXT-ELEC-0180 |  | Place Generators for Colo 1 CELL4 | 3d | 2020-10-07 | 2020-10-09 | BIM-01-01-EXT-ELEC-0170 | 7d | 0d |  |  | Cones [30 h]; Lifting Operations [1]; Driving - Round Loop [30 h] | ELEC |  | COLO1 | CELL4 | FIT |  |  |  |  |  |  |  |  |
| BIM-01-01-EXT-ELEC-0200 |  | Pull Conductors from UPMs to Transformers for Colo 1 | 10d | 2020-10-12 | 2020-10-23 | BIM-01-01-EXT-ELEC-0180 | 7d | 0d |  |  | Electrical [1] | ELEC | MV_WIRE | SITE | N/A | SITE |  |  |  |  |  |  |  |  |
| BIM-01-01-EXT-ELEC-0190 |  | Install Overhead Conduits and Supports for Colo 1 | 15d | 2020-10-16 | 2020-11-05 | BIM-01-01-EXT-ELEC-0180, BIM-01-01-EXT-FA-0010 | 15d |  |  |  | STRC - 1 - Gen Conductor Frame - Cell 1 [1]; STRC - 1 - Gen Conductor Frame - Cell 2 [1]; STRC - 1 - Gen Conductor Frame - Cell 4 [1]; STRC - 1 - Gen Conductor Frame - Cell 3 [1]; Electrical [1] | STRC | STL | SITE | N/A | SITE |  | Different links and sequencing |  |  |  |  |  |  |
| BIM-01-01-EXT-ELEC-0210 |  | Pull Conductors from Transformers to MBSs for Colo 1 | 8d | 2020-10-26 | 2020-11-04 | BIM-01-01-EXT-ELEC-0200 | 7d | 0d |  |  | Electrical [0.8] | ELEC | MV_WIRE | SITE | N/A | SITE |  |  |  |  |  |  |  |  |
| BIM-01-01-EXT-ELEC-0230 |  | Megger Conductors from UPMs to Transformers for Colo 1 | 1d | 2020-10-26 | 2020-10-26 | BIM-01-01-EXT-ELEC-0200 | 23d | 0d |  |  | Electrical [1] | ELEC | MV_WIRE | SITE | N/A | SITE |  |  |  |  |  |  |  |  |
| BIM-01-01-EXT-ELEC-0260 |  | Terminate Conductors from UPMs to Transformers at Both Sides for Colo 1 | 10d | 2020-10-27 | 2020-11-09 | BIM-01-01-EXT-ELEC-0230 | 23d | 0d |  |  | Electrical [1] | ELEC | MV_WIRE | SITE | N/A | SITE |  |  |  |  |  |  |  |  |
| BIM-01-01-EXT-ELEC-0220 |  | Pull Conductors from Generators to MBSs for Colo 1 | 8d | 2020-11-05 | 2020-11-16 | BIM-01-01-EXT-ELEC-0210 | 7d | 0d |  |  | Electrical [0.8] | ELEC | MV_WIRE | SITE | N/A | SITE |  |  |  |  |  |  |  |  |
| BIM-01-01-EXT-ELEC-0240 |  | Megger Conductors from Transformers to MBSs for Colo 1 | 1d | 2020-11-05 | 2020-11-05 | BIM-01-01-EXT-ELEC-0210 | 25d | 2d |  |  | Electrical [1] | ELEC | MV_WIRE | SITE | N/A | SITE |  |  |  |  |  |  |  |  |
| BIM-01-01-EXT-ELEC-0270 |  | Terminate Conductors from Transformers to MBSs at Both Sides for Colo 1 | 10d | 2020-11-10 | 2020-11-23 | BIM-01-01-EXT-ELEC-0240, BIM-01-01-EXT-ELEC-0260 | 23d | 0d |  |  | Electrical [1] | ELEC | MV_WIRE | SITE | N/A | SITE |  |  |  |  |  |  |  |  |
| BIM-01-01-EXT-ELEC-0250 |  | Megger Conductors from Generators to MBSs for Colo 1 | 1d | 2020-11-17 | 2020-11-17 | BIM-01-01-EXT-ELEC-0220 | 7d | 4d |  |  | Electrical [1] | ELEC | MV_WIRE | SITE | N/A | SITE |  |  |  |  |  |  |  |  |
| BIM-01-01-EXT-ELEC-0280 |  | Terminate Conductors from Generators to MBSs at Both Sides for Colo 1 | 10d | 2020-11-24 | 2020-12-07 | BIM-01-01-EXT-ELEC-0250, BIM-01-01-EXT-ELEC-0270 | 23d |  |  |  | Electrical [1] | ELEC | MV_WIRE | SITE | N/A | SITE |  |  |  |  |  |  |  |  |
| BIM-01-01-EXT-ELEC-0300 |  | Energize Colo 1 Power Loop (UPM-Transformer-MBS, Generator-MBS) | 1d | 2020-11-27 | 2020-11-27 | BIM-01-01-DH-ELEC-0090, BIM-01-01-EXT-ELEC-0190, BIM-01-01-EXT-ELEC-0250 | 0d |  |  |  | Electrical [1] | ELEC | FDR | SITE | N/A | ENER |  |  | FEED | N | CHI | 10 | N/A | N/A |

| ID | WBS | Activity | Duration | Start | Finish | Predecessors | Total float | Free float | Resources | CHI10_Duration | CHI10_Comments | ACTION | DISCIPLINE | SYSTEM | BUILDING SECTOR | BUILDING SUB-SECTOR | AREA | CAMPUS | BUILDING | PHASE | PART |
| --- | --- | --- | --- | --- | --- | --- | --- | --- | --- | --- | --- | --- | --- | --- | --- | --- | --- | --- | --- | --- | --- |
|  | 3 | **Plumbing** |  | 2020-09-08 | 2020-10-16 |  |  |  |  |  |  |  |  |  |  |  |  |  |  |  |  |
| BIM-01-01-EXT-PLMB-0010 |  | Install Downspouts & Gutters in Colo 1 | 4d | 2020-09-08 | 2020-09-11 | BIM-01-01-ENV-0020 SS+11d | 0d |  | Work at Heights [1] | 10 | match | INSTL | ARCH | ROOF | COLO1 | N/A | GEN | CHI | 10 | CS | ENVLP |
| BIM-01-01-EXT-PLMB-0020 |  | Install and Connect Roof Drains in Colo 1 | 20d | 2020-09-14 | 2020-10-09 | BIM-01-01-ENV-0020 SS+11d, BIM-01-01-EXT-PLMB-0010 | 0d |  | Work at Heights [1] | 10 | match | INSTL | ARCH | ROOF | COLO1 | N/A | GEN | CHI | 10 | CS | ENVLP |
| BIM-01-01-EXT-PLMB-0030 |  | Install and Connect Exterior Domestic Water and Sanitary Piping in Colo 1 | 5d | 2020-10-12 | 2020-10-16 | BIM-01-01-EXT-MECH-0030, BIM-01-01-EXT-PLMB-0020 | 0d |  | Confined Space [0.62]; Ground Disturbance [0.62] |  |  | INSTL | PLMB | PIPE | COLO1 | N/A | INT | CHI | 10 | FIT | INTERIOR |
|  | 4 | **Fire Alarm** |  | 2020-09-18 | 2020-10-15 |  |  |  |  |  |  |  |  |  |  |  |  |  |  |  |  |
| BIM-01-01-EXT-FA-0010 |  | Install Exterior Fire Alarm System in Colo 1 | 20d | 2020-09-18 | 2020-10-15 | BIM-01-01-EXT-ELEC-0010 | 15d | 0d |  |  |  | INSTL | FA | SYS | COLO1 | N/A | DH | CHI | 10 | FIT | INTERIOR |
|  | 5 | **Controls** |  | 2020-10-16 | 2020-11-12 |  |  |  |  |  |  |  |  |  |  |  |  |  |  |  |  |
| BIM-01-01-EXT-CTRL-0010 |  | Install Control System in Colo 1 | 20d | 2020-10-16 | 2020-11-12 | BIM-01-01-EXT-ELEC-0010, BIM-01-01-EXT-FA-0010 | 50d |  |  |  |  | INSTL | SEC | DEV | COLO1 | N/A | DH | CHI | 10 | FIT | INTERIOR |
|  | 6 | **Security** |  | 2020-10-06 | 2020-11-02 |  |  |  |  |  |  |  |  |  |  |  |  |  |  |  |  |
| BIM-01-01-EXT-SEC-0010 |  | Install Exterior Access Control and CCTV in Colo 1 | 20d | 2020-10-06 | 2020-11-02 | BIM-01-01-EXT-ELEC-0010, BIM-01-AD-ENV-0050 | 48d |  |  |  |  | INSTL | SEC | DEV | COLO2 | N/A | DH | CHI | 10 | FIT | INTERIOR |
|  | 3 | **Interior MEP Systems Buildout** |  | 2020-09-24 | 2021-01-15 |  |  |  |  |  |  |  |  |  |  |  |  |  |  |  |  |
|  | 1 | **Data Hall** |  | 2020-09-24 | 2021-01-15 |  |  |  |  |  |  |  |  |  |  |  |  |  |  |  |  |
|  | 1 | **Electrical** |  | 2020-09-24 | 2020-11-26 |  |  |  |  |  |  |  |  |  |  |  |  |  |  |  |  |
| BIM-01-01-DH-ELEC-0010 |  | Install PDU's / HAC's in Data Hall Colo 1 | 30d | 2020-09-24 | 2020-11-04 | BIM-01-01-DH-CSA-0030 | 0d |  | Material Handling [1]; Electrical [1] |  |  |  | STRC | EQUIP | COLO1 | N/A |  |  |  | FIT |  |
| BIM-01-01-DH-ELEC-0020 |  | Install Electrical Cable Tray in Data Hall Colo 1 | 15d | 2020-10-02 | 2020-10-22 | BIM-01-01-DH-ELEC-0010 SS+6d | 5d | 0d | HRA COLO 1 ELEC YARD [150 h]; Electrical [1]; Work at Heights [1]; ARCH - 2 - Ceiling - Cell 3 - Mech [150] |  |  | INSTL | ELEC | CTRAY | COLO1 | N/A | INT | CHI | 10 | FIT | INTERIOR |
| BIM-01-01-DH-ELEC-0040 |  | Install and Wire Lighting Fixtures in Data Hall Colo 1 | 30d | 2020-10-02 | 2020-11-12 | BIM-01-01-DH-ELEC-0010 SS+6d | 5d | 0d | Electrical [1]; Work at Heights [1] |  |  | INSTL | ELEC | LTNG | COLO1 | N/A | DH | CHI | 10 | FIT | INTERIOR |
| BIM-01-01-DH-ELEC-0050 |  | Install Electrical Conduit in Data Hall Colo 1 | 10d | 2020-10-02 | 2020-10-15 | BIM-01-01-DH-ELEC-0010 SS+6d | 5d |  | Electrical [1]; Work at Heights [1] |  |  | INSTL | ELEC | COND | COLO1 | N/A | INT | CHI | 10 | FIT |  |
| BIM-01-01-DH-ELEC-0060 |  | Pull Conductors for Electrical/Mechanical equipment in Colo 1 | 15d | 2020-10-02 | 2020-10-22 | BIM-01-01-DH-ELEC-0010 SS+6d | 0d |  | Electrical [1]; Work at Heights [1] |  |  | TERM | ELEC | LV_FDR | COLO1 | N/A | INT | CHI | 10 | FIT | INTERIOR |
| BIM-01-01-DH-ELEC-0030 |  | Install Power Bus in Data Hall Colo 1 | 15d | 2020-10-23 | 2020-11-12 | BIM-01-01-DH-ELEC-0020 | 5d | 0d | ELEC - 1 - Busway - Cell 1 [1]; ELEC - 1 - Busway - Cell 2 [1]; ELEC - 1 - Busway - Cell 3 [1]; ELEC - 1 - Busway - Cell 4 [1]; Electrical [1]; Work at Heights [1] |  |  | INSTL | ELEC | DT | COLO1 | N/A | INT | CHI | 10 | FIT | N/A |
| BIM-01-01-DH-ELEC-0070 |  | Megger Conductors for Electrical/Mechanical Equipment in Colo 1 | 10d | 2020-10-23 | 2020-11-05 | BIM-01-01-DH-ELEC-0060, BIM-01-01-DH-ELEC-0050 | 0d |  | Electrical [1]; Work at Heights [1] |  |  | TERM | ELEC | LV_FDR | COLO1 | N/A | INT | CHI | 10 | FIT | INTERIOR |
| BIM-01-01-DH-ELEC-0080 |  | Terminate Conductors for Electrical/Mechanical Equipment on both sides in Data Hall Colo 1 | 10d | 2020-11-06 | 2020-11-19 | BIM-01-01-DH-ELEC-0070 | 0d |  | Electrical [1]; Work at Heights [1] |  |  | TERM | ELEC | LV_FDR | COLO1 | N/A | INT | CHI | 10 | FIT | INTERIOR |
| BIM-01-01-DH-ELEC-0090 |  | Install Grounding and Bonding System in Data Hall Colo 1 | 5d | 2020-11-20 | 2020-11-26 | BIM-01-01-DH-ELEC-0080, BIM-01-01-DH-ELEC-0040, BIM-01-01-DH-ELEC-0030 | 0d |  | Electrical [1] |  |  | INSTL | ELEC | BSW | COLO1 | N/A | DH | CHI | 10 | FIT | INTERIOR |
|  | 2 | **Fire Protection** |  | 2020-11-13 | 2021-01-14 |  |  |  |  |  |  |  |  |  |  |  |  |  |  |  |  |
| BIM-01-01-DH-FP-0010 |  | Install Fire Protection System in Data Hall Colo 1 | 45d | 2020-11-13 | 2021-01-14 | BIM-01-01-DH-TCOM-0010 SS, BIM-01-01-DH-ELEC-0040 | 38d | 15d | FPRT - 1 - Fire Protection System [1] |  |  | INSTL | FP | PIPE | COLO1 | CELL2 | RISER | CHI | 10 | FIT | INTERIOR |

| ID | WBS | Activity | Duration | Start | Finish | Predecessors | Total float | Free float | Resources | ACTION | DISCIPLINE | SYSTEM | BUILDING SECTOR | BUILDING SUB-SECTOR | AREA | CAMPUS | BUILDING | PHASE | PART | ASSEMBLY |
| --- | --- | --- | --- | --- | --- | --- | --- | --- | --- | --- | --- | --- | --- | --- | --- | --- | --- | --- | --- | --- |
|  | 3 | **Telecommunication** |  | 2020-11-02 | 2021-01-07 |  |  |  |  |  |  |  |  |  |  |  |  |  |  |  |
| BIM-01-01-DH-TCOM-0020 |  | Pull/Test/Terminate Wires for EPMS in Data Hall Colo 1 | 40d | 2020-11-02 | 2020-12-25 | BIM-01-01-DH-CSA-0060 FS+3d | 35d | 0d |  | TERM | TELECOM | WIRE | COLO1 | N/A | DH | CHI | 10 | FIT | INTERIOR |  |
| BIM-01-01-DH-TCOM-0030 |  | Install Telecommunication Fiber and Copper Conductors in Colo 1 | 20d | 2020-11-02 | 2020-11-27 | BIM-01-01-DH-TCOM-0020 SS | 55d | 21d |  | TERM | TELECOM | WIRE | COLO1 | N/A | DH | CHI | 10 | FIT | INTERIOR |  |
| BIM-01-01-DH-TCOM-0040 |  | Install Telecommunication Equipment and Devices in Colo 1 | 20d | 2020-11-02 | 2020-11-27 | BIM-01-01-DH-TCOM-0020 SS | 55d | 21d |  | INSTL | TELECOM | FIBER | COLO1 | N/A | DH | CHI | 10 | FIT | INTERIOR |  |
| BIM-01-01-DH-TCOM-0010 |  | Pull/Test/Terminate Wires for BMS in Data Hall Colo 1 | 40d | 2020-11-13 | 2021-01-07 | BIM-01-01-DH-CSA-0060 FS+3d, BIM-01-01-DH-ELEC-0030 | 20d | 0d |  | TERM | TELECOM | WIRE | COLO1 | N/A | DH | CHI | 10 | FIT | INTERIOR |  |
|  | 4 | **Fire Alarm** |  | 2020-11-13 | 2021-01-15 |  |  |  |  |  |  |  |  |  |  |  |  |  |  |  |
| BIM-01-01-DH-FA-0010 |  | Install Fire Alarm System in Data Hall Colo 1 | 46d | 2020-11-13 | 2021-01-15 | BIM-01-01-DH-TCOM-0010 SS | 20d |  | Work at Heights [1] | INSTL | FP | PIPE | COLO1 | CELL2 | RISER | CHI | 10 | FIT | INTERIOR |  |
|  | 5 | **Security** |  | 2020-12-04 | 2020-12-17 |  |  |  |  |  |  |  |  |  |  |  |  |  |  |  |
| BIM-01-01-DH-SEC-0010 |  | Install Interior Access Control and CCTV in Data Hall Colo 1 | 10d | 2020-12-04 | 2020-12-17 | BIM-01-01-DH-FP-0010 SS, BIM-01-01-CSA-F | 23d | 0d |  | INSTL | SEC | DEV | COLO2 | N/A | DH | CHI | 10 | FIT | INTERIOR |  |
|  | 6 | **BAS** |  | 2020-11-13 | 2021-01-14 |  |  |  |  |  |  |  |  |  |  |  |  |  |  |  |
| BIM-01-01-DH-BAS-0010 |  | Install BAS/Control Systems in Data Hall Colo 1 | 45d | 2020-11-13 | 2021-01-14 | BIM-01-01-DH-TCOM-0010 SS | 21d | 15d |  | INSTL | CTRL | SYS | COLO1 | N/A | DH | CHI | 10 | FIT |  |  |
|  | 2 | **Mechanical Gallery** |  | 2020-10-08 | 2021-01-04 |  |  |  |  |  |  |  |  |  |  |  |  |  |  |  |
|  | 1 | **Mechanical** |  | 2020-10-19 | 2020-12-04 |  |  |  |  |  |  |  |  |  |  |  |  |  |  |  |
| BIM-01-01-MG-MECH-0010 |  | Install Interior Mechanical Equipment and Devices in Mechanical Gallery Colo 1 | 25d | 2020-10-19 | 2020-11-20 | BIM-01-01-EXT-MECH-0010 SS+8d, BIM-01-01-EXT-PLMB-0030 | 0d |  | Lifting Operations [1] | INSTL | MECH | EQUIP | COLO1 | N/A | INT | CHI | 10 | FIT | INTERIOR | N/A |
| BIM-01-01-MG-MECH-0020 |  | Install Interior Ductwork System and Supports in Mechanical Gallery Colo 1 | 15d | 2020-10-19 | 2020-11-06 | BIM-01-01-MG-MECH-0010 SS | 32d | 10d | Material Handling [1]; Work at Heights [1] | INSTL | MECH | DUCT | COLO1 | N/A | INT | CHI | 10 | FIT | INTERIOR | N/A |
| BIM-01-01-MG-MECH-0030 |  | Install Interior Mechanical Piping and Supports in Mechanical Gallery Colo 1 | 10d | 2020-11-23 | 2020-12-04 | BIM-01-01-MG-MECH-0010, BIM-01-01-MG-MECH-0020 | 22d | 0d | MECH - 1 - Mechanical Piping [1]; Material Handling [1]; Work at Heights [1] | INSTL | MECH | PIPE | COLO1 | N/A | INT | CHI | 10 | FIT |  |  |
|  | 2 | **Electrical** |  | 2020-10-08 | 2020-11-11 |  |  |  |  |  |  |  |  |  |  |  |  |  |  |  |
| BIM-01-01-MG-ELEC-0010 |  | Install Electrical Equipment and Devices in Mechanical Gallery Colo 1 | 20d | 2020-10-08 | 2020-11-04 | BIM-01-01-MG-CSA-0030 | 33d | 0d | Material Handling [1]; Work at Heights [1]; Electrical [1] | INSTL | ELEC | DT | COLO1 | N/A | INT | CHI | 10 | FIT | N/A |  |
| BIM-01-01-MG-ELEC-0020 |  | Install and Wire Lighting Fixtures in Mechanical Gallery Colo 1 | 20d | 2020-10-15 | 2020-11-11 | BIM-01-01-MG-ELEC-0010 SS+5d | 33d |  | Electrical [1]; Work at Heights [1] | INSTL | ELEC | LTNG | COLO1 | N/A | DH | CHI | 10 | FIT | INTERIOR |  |
|  | 3 | **Plumbing** |  | 2020-12-07 | 2021-01-04 |  |  |  |  |  |  |  |  |  |  |  |  |  |  |  |
| BIM-01-01-MG-PLMB-0010 |  | Install Domestic Water Piping in Mechanical Gallery Colo 1 | 10d | 2020-12-07 | 2020-12-18 | BIM-01-01-MG-MECH-0030 | 22d | 0d | Confined Space [1]; Ground Disturbance [1] | INSTL | PLMB | PIPE | COLO1 | N/A | INT | CHI | 10 | FIT | INTERIOR |  |
| BIM-01-01-MG-PLMB-0020 |  | Install Sanitary and Vent Piping in Mechanical Gallery Colo 1 | 11d | 2020-12-15 | 2020-12-29 | BIM-01-01-MG-PLMB-0010 FS-4d | 29d | 0d | PFP - 1 - Sanitary and Vent Piping [1]; Confined Space [1]; Ground Disturbance [1] | INSTL | PLMB | PIPE | COLO1 | N/A | INT | CHI | 10 | FIT |  |  |
| BIM-01-01-MG-PLMB-0030 |  | Install Non-Potable Water Piping in Mechanical Gallery Colo 1 | 11d | 2020-12-21 | 2021-01-04 | BIM-01-01-MG-PLMB-0020 SS+4d | 29d | 0d | Confined Space [1]; Ground Disturbance [1] | INSTL | PLMB | PIPE | COLO1 | N/A | INT | CHI | 10 | FIT | INTERIOR |  |
| BIM-01-01-MG-PLMB-0040 |  | Install and Connect Plumbing Equipment and Fixtures in Mechanical Gallery Colo 1 | 6d | 2020-12-28 | 2021-01-04 | BIM-01-01-MG-PLMB-0030 SS+5d | 29d |  | Confined Space [1]; Ground Disturbance [1] | INSTL | PLMB | PFIX | COLO1 | N/A | INT | CHI | 10 | FIT | INTERIOR |  |

| ID | WBS | Activity | Duration | Start | Finish | Predecessors | Total float | Free float | Resources | ACTION | DISCIPLINE | SYSTEM | BUILDING SECTOR | BUILDING SUB-SECTOR | AREA | CAMPUS | BUILDING | PHASE | PART |
| --- | --- | --- | --- | --- | --- | --- | --- | --- | --- | --- | --- | --- | --- | --- | --- | --- | --- | --- | --- |
|  | 4 | **Fire Protection** |  | 2020-10-09 | 2020-11-19 |  |  |  |  |  |  |  |  |  |  |  |  |  |  |
| BIM-01-01-MG-FP-0010 |  | Install Fire Protection System in Mechanical Gallery Colo 1 | 30d | 2020-10-09 | 2020-11-19 | BIM-01-01-ENV-0020, BIM-01-01-MG-CSA-0010 | 40d | 0d | Material Handling [1]; Work at Heights [1] | INSTL | FP | PIPE | COLO1 | CELL2 | RISER | CHI | 10 | FIT | INTERIOR |
|  | 5 | **Fire Alarm** |  | 2020-10-09 | 2020-12-03 |  |  |  |  |  |  |  |  |  |  |  |  |  |  |
| BIM-01-01-MG-FA-0010 |  | Install Fire Alarm System in Mechanical Gallery Colo 1 | 40d | 2020-10-09 | 2020-12-03 | BIM-01-01-MG-FP-0010 SS | 51d |  |  | INSTL | FA | SYS | COLO1 | N/A | DH | CHI | 10 | FIT | INTERIOR |
|  | 6 | **Security** |  | 2020-10-09 | 2020-10-22 |  |  |  |  |  |  |  |  |  |  |  |  |  |  |
| BIM-01-01-MG-SEC-0010 |  | Install Interior Access Control and CCTV in Mechanical Gallery Colo 1 | 10d | 2020-10-09 | 2020-10-22 | BIM-01-01-MG-FP-0010 SS | 81d | 76d |  | INSTL | SEC | DEV | COLO2 | N/A | DH | CHI | 10 | FIT | INTERIOR |
|  | 7 | **BAS** |  | 2020-10-09 | 2020-12-18 |  |  |  |  |  |  |  |  |  |  |  |  |  |  |
| BIM-01-01-MG-BAS-0010 |  | Install BAS/Control Systems in Mechanical Gallery Colo 1 | 51d | 2020-10-09 | 2020-12-18 | BIM-01-01-MG-FP-0010 SS | 40d | 34d | CTRL - 1 - Equipment and Devices [1]; CTRL - A - Equipment and Devices [1] | INSTL | CTRL | SYS | COLO1 | N/A | DH | CHI | 10 | FIT |  |
|  | 4 | **Commissioning** |  | 2020-09-22 | 2021-02-12 |  |  |  |  |  |  |  |  |  |  |  |  |  |  |
|  | 1 | **Level 1 Cx - Colo 1** |  | 2020-09-22 | 2020-11-23 |  |  |  |  |  |  |  |  |  |  |  |  |  |  |
| BIM-01-01-L1CX-0010 |  | Red Tag UMS's | 1d | 2020-09-22 | 2020-09-22 | BIM-01-01-EXT-ELEC-0030, BIM-01-01-EXT-ELEC-0040 | 83d | 0d |  | TAG | GEN | GEN | COLO1 | CELL1 | GEN | CHI | 10 | LVL1 | N/A |
| BIM-01-01-L1CX-0020 |  | Red Tag UPM's in Colo 1 | 1d | 2020-10-12 | 2020-10-12 | BIM-01-01-EXT-ELEC-0050, BIM-01-01-EXT-ELEC-0060 | 73d | 50d |  | TAG | GEN | GEN | COLO1 | CELL1 | GEN | CHI | 10 | LVL1 | N/A |
| BIM-01-01-L1CX-0030 |  | Red Tag Transformers in Colo 1 | 1d | 2020-10-12 | 2020-10-12 | BIM-01-01-EXT-ELEC-0070, BIM-01-01-EXT-ELEC-0080, BIM-01-01-EXT-ELEC-0090, BIM-01-01-EXT-ELEC-0100 | 35d |  |  | TAG | GEN | GEN | COLO1 | CELL1 | GEN | CHI | 10 | LVL1 | N/A |
| BIM-01-01-L1CX-0040 |  | Red Tag Generators in Colo 1 | 1d | 2020-10-12 | 2020-10-12 | BIM-01-01-EXT-ELEC-0120, BIM-01-01-EXT-ELEC-0140, BIM-01-01-EXT-ELEC-0160, BIM-01-01-EXT-ELEC-0180 | 73d | 50d |  | TAG | GEN | GEN | COLO1 | CELL1 | GEN | CHI | 10 | LVL1 | N/A |
| BIM-01-01-L1CX-0060 |  | Red Tag PDU's in Colo 1 | 1d | 2020-11-05 | 2020-11-05 | BIM-01-01-DH-ELEC-0010, BIM-01-01-L1CX-S | 13d |  |  | TAG | GEN | GEN | COLO1 | CELL1 | GEN | CHI | 10 | LVL1 | N/A |
| BIM-01-01-L1CX-0050 |  | Red Tag AHU's in Colo 1 | 1d | 2020-11-23 | 2020-11-23 | BIM-01-01-MG-MECH-0010, BIM-01-01-EXT-MECH-0040 | 0d |  |  | TAG | GEN | GEN | COLO1 | CELL1 | GEN | CHI | 10 | LVL1 | N/A |
|  | 2 | **Level 2 Cx - Colo 1** |  | 2020-11-24 | 2020-12-28 |  |  |  |  |  |  |  |  |  |  |  |  |  |  |
| BIM-01-01-L2CX-0010 |  | Perform Quality Control Pre Start Up Checks in Colo 1 | 25d | 2020-11-24 | 2020-12-28 | BIM-01-01-L1CX-0030 FS-5d, BIM-01-01-L1CX-0050, BIM-01-01-GEN-F FS-5d | 0d |  |  | PRFRM | GEN | GEN | COLO1 | CELL1 | GEN | CHI | 10 | LVL2 | N/A |
| BIM-01-01-L2CX-0020 |  | Yellow Tag Equipment in Colo 1 | 25d | 2020-11-24 | 2020-12-28 | BIM-01-01-L2CX-0010 SS, BIM-01-01-L2CX-S, BIM-01-01-ROJ-F | 0d |  |  | TAG | GEN | GEN | COLO1 | CELL1 | GEN | CHI | 10 | LVL2 |  |
| BIM-01-01-L2CX-0030 |  | Energize Equipment in Colo 1 | 1d | 2020-12-28 | 2020-12-28 | BIM-01-01-L2CX-0020 FF, BIM-01-01-EXT-ELEC-0290 | 0d |  |  | ENER | GEN | GEN | COLO1 | CELL1 | GEN | CHI | 10 | LVL2 | N/A |
|  | 3 | **Level 3 Cx - Colo 1** |  | 2020-12-29 | 2021-02-12 |  |  |  |  |  |  |  |  |  |  |  |  |  |  |
| BIM-01-01-L3CX-0010 |  | Perform OFCI and CFCI Equipment Lvl 3 Start Up Checks in Colo 1 | 30d | 2020-12-29 | 2021-02-08 | BIM-01-01-L2CX-0020 SS, BIM-01-01-L2CX-F, BIM-01-01-L3CX-S, BIM-01-01-MG-ELEC-0020 | 0d |  |  | PRFRM | GEN | GEN | COLO1 | CELL1 | GEN | CHI | 10 | LVL3 | N/A |
| BIM-01-01-L3CX-0040 |  | Perform EPMS Start Up Checks in Colo 1 | 10d | 2021-01-04 | 2021-01-15 | BIM-01-01-L2CX-F, BIM-01-01-POW-F, BIM-01-01-L3CX-0010 SS+4d | 4d | 0d |  | PRFRM | GEN | GEN | COLO1 | CELL1 | GEN | CHI | 10 | LVL3 | N/A |
| BIM-01-01-L3CX-0020 |  | Perform Site Start Up / Site Acceptance Testing in Colo 1 | 10d | 2021-01-08 | 2021-01-21 | BIM-01-01-L3CX-0010 SS+8d, BIM-01-01-EXT-SEC-0010, BIM-01-01-MEQ-S, BIM-01-01-EXT-ELEC-0280, BIM-01-01-MEP-F | 0d |  |  | PRFRM | GEN | GEN | COLO1 | CELL1 | GEN | CHI | 10 | LVL3 | N/A |
| BIM-01-01-L3CX-0030 |  | Perform BAS Lvl3 Start Up Checks in Colo 1 | 10d | 2021-01-08 | 2021-01-21 | BIM-01-01-L3CX-0040 SS+4d | 16d | 10d |  | PRFRM | GEN | GEN | COLO1 | CELL1 | GEN | CHI | 10 | LVL3 | N/A |
| BIM-01-01-L3CX-0050 |  | Green Tag Equipment in Colo 1 | 16d | 2021-01-22 | 2021-02-12 | BIM-01-01-L3CX-0040, BIM-01-SUM-AD-FT, BIM-01-01-L3CX-S, BIM-01-01-L3CX-0020, BIM-01-00-LHP-F, BIM-01-01-EXT-CTRL-0010, BIM-01-01-L1CX-F | 0d |  |  | TAG | GEN | GEN | COLO1 | CELL1 | GEN | CHI | 10 | LVL3 | N/A |

| ID | WBS | Activity | Duration | Start | Finish | Predecessors | Total float | ACTION | DISCIPLINE | SYSTEM | BUILDING SECTOR | BUILDING SUB-SECTOR | AREA | CAMPUS | BUILDING | PHASE | PART |
| --- | --- | --- | --- | --- | --- | --- | --- | --- | --- | --- | --- | --- | --- | --- | --- | --- | --- |
|  | 5 | **MSFT Commissioning** |  | 2021-02-15 | 2021-03-17 |  |  |  |  |  |  |  |  |  |  |  |  |
|  | 1 | **Level 4 Cx - Colo 1** |  | 2021-02-15 | 2021-03-10 |  |  |  |  |  |  |  |  |  |  |  |  |
| BIM-01-01-L4CX-0010 |  | Perform Functional Performance Tests in Colo 1 | 10d | 2021-02-15 | 2021-02-26 | BIM-01-01-L3CX-0050, BIM-01-01-FIR-F, BIM-01-01-EPM-F, BIM-01-01-BAS-F, BIM-01-01-MG-PLMB-0040, BIM-01-01-RNI-F, BIM-01-01-SEC-F | 0d | PRFRM | GEN | GEN | COLO1 | N/A | GEN | CHI | 10 | LVL4_5_IST | N/A |
| BIM-01-01-L4CX-0020 |  | Blue Tag Equipment in Colo 1 | 8d | 2021-03-01 | 2021-03-10 | BIM-01-01-L4CX-0010, BIM-01-01-SSC-F, BIM-01-01-L3CX-0050, BIM-01-AD-L3CX-0050, BIM-01-01-L3CX-F | 0d | TAG | GEN | GEN | COLO1 | N/A | GEN | CHI | 10 | LVL4_5_IST | N/A |
|  | 2 | **Level 5 Cx / IST - Colo 1** |  | 2021-03-11 | 2021-03-17 |  |  |  |  |  |  |  |  |  |  |  |  |
| BIM-01-01-L5CX-0010 |  | Perform Integrated Systems Test in Colo 1 | 4d | 2021-03-11 | 2021-03-16 | BIM-01-01-L4CX-0020, BIM-01-01-L4CX-F | 0d | PRFRM | GEN | GEN | COLO1 | N/A | GEN | CHI | 10 | LVL4_5_IST | N/A |
| BIM-01-01-L5CX-0020 |  | White Tag Equipment in Colo 1 | 1d | 2021-03-17 | 2021-03-17 | BIM-01-01-L5CX-0010 | 0d | TAG | GEN | GEN | COLO1 | N/A | GEN | CHI | 10 | LVL4_5_IST |  |

## Activity codes

| Code | Value | Meaning |
| --- | --- | --- |
| ACTION | CNST | Construct |
| ACTION | CONNECT | Connect |
| ACTION | ERECT | Erect |
| ACTION | ESTAB | Establish |
| ACTION | EXCAV | Excavate |
| ACTION | FEED | Feed |
| ACTION | FRAME | Frame |
| ACTION | INSTL | Install |
| ACTION | PAINT | Paint |
| ACTION | PLACE | Place |
| ACTION | PRFRM | Perform |
| ACTION | PV | Pave |
| ACTION | SE | Seal and Epoxy |
| ACTION | TAG | Tagging |
| ACTION | TAPE | Taper |
| ACTION | TERM | Terminate |
| ACTION | WTP | Waterproof |
| AREA | DH | Data Hall |
| AREA | EXT | Exterior |
| AREA | GEN | General |
| AREA | INT | Interior |
| AREA | MECH_GAL | Mechanical Gallery |
| AREA | N | North |
| AREA | RISER | Riser Room |
| ASSEMBLY | EPOX | Epoxy Flooring |
| ASSEMBLY | FINSH | Finishes |
| ASSEMBLY | PART | Partitions |
| ASSEMBLY | SPEC | Specialities |
| BUILDING SECTOR | ADMIN | Admin |
| BUILDING SECTOR | COLO1 | Colo 1 |
| BUILDING SECTOR | COLO2 | Colo 2 |
| BUILDING SECTOR | GEN | General |
| BUILDING SECTOR | N/A | Not Applicable |
| BUILDING SECTOR | SITE | Site |
| BUILDING SUB-SECTOR | CELL1 | Cell 1 |
| BUILDING SUB-SECTOR | CELL2 | Cell 2 |
| BUILDING SUB-SECTOR | CELL3 | Cell 3 |
| BUILDING SUB-SECTOR | CELL4 | Cell 4 |
| BUILDING SUB-SECTOR | GEN | General |
| BUILDING SUB-SECTOR | N/A | Not Applicable |
| DISCIPLINE | ARCH | Architectural |
| DISCIPLINE | CIVIL | Civil |
| DISCIPLINE | CTRL | Control |
| DISCIPLINE | ELEC | Electrical |
| DISCIPLINE | FA | Fire Alarm |
| DISCIPLINE | FP | Fire Protection |
| DISCIPLINE | GEN | General |
| DISCIPLINE | LDSCP | Landscaping |
| DISCIPLINE | MECH | Mechanical |
| DISCIPLINE | PLMB | Plumbing |
| DISCIPLINE | SCRT | Security |
| DISCIPLINE | SEC | Security |
| DISCIPLINE | STRC | Structural |
| DISCIPLINE | TELECOM | Telecommunication |
| PART | BLDG | Buiding |
| PART | ENVLP | Envelope |
| PART | INTERIOR | Interior |
| PART | LANDS | Landscape |
| PART | SITE | Site |
| PHASE | CS | Core and Shell |
| PHASE | ENER | Energization |
| PHASE | FIT | Fitout |
| PHASE | LVL1 | Level 1 |
| PHASE | LVL2 | Level 2 |
| PHASE | LVL3 | Level 3 |
| PHASE | ML | Milestones |
| PHASE | PRELIM | Preliminary Milestones |
| PHASE | SITE | Site |
| SYSTEM | A | Architectural |
| SYSTEM | BSW | Power Busway |
| SYSTEM | C | Civil |
| SYSTEM | CLNG | Ceilings |
| SYSTEM | CONC | Concrete |
| SYSTEM | COND | Conduits |
| SYSTEM | CTRAY | Cable Tray |
| SYSTEM | DCTBK | Ductbank |
| SYSTEM | DEV | Security Devices |
| SYSTEM | DOMWTR | Domestic Water |
| SYSTEM | DOOR | Doors |
| SYSTEM | DT | Devices & Trim |
| SYSTEM | DUCT | Ducts |
| SYSTEM | E | Electrical |
| SYSTEM | EQUIP | Mechanical Equipment |
| SYSTEM | EXT | External |
| SYSTEM | FDR | Feeders |
| SYSTEM | FENCE | Fence |
| SYSTEM | FIBER | Fibre |
| SYSTEM | FLR | Floors |
| SYSTEM | FND | Foundations |
| SYSTEM | FRNTR | Furniture |
| SYSTEM | GEN | General |
| SYSTEM | GRND | Grounding and Bonding |
| SYSTEM | IMP | Insulated metal Panels |
| SYSTEM | LTNG | Lighting |
| SYSTEM | LV_FDR | LV Feeder |
| SYSTEM | MV_WIRE | Wiring |
| SYSTEM | PADS | Pads |
| SYSTEM | PART | Partitions |
| SYSTEM | PAVE | Pavement |
| SYSTEM | PEMB | Pre-Engineered Metal Building |
| SYSTEM | PFIX | Plumbing Fixtures |
| SYSTEM | PILES | Piles |
| SYSTEM | PIPE | Fire Protection Piping |
| SYSTEM | PRIME | Primary Steel |
| SYSTEM | ROOF | Roof |
| SYSTEM | SANSWR | Sanitary Sewer |
| SYSTEM | SECND | Secondary Steel |
| SYSTEM | SLABS | Slabs |
| SYSTEM | STL | Steel |
| SYSTEM | STMSWR | Storm Sewer |
| SYSTEM | SYS | Control Systems |
| SYSTEM | UMS | Utility Main Switchgear |
| SYSTEM | UPM | Utiity Padmount Switchgear |
| SYSTEM | VAULT | Vaults |
| SYSTEM | WIND | Windows |
| SYSTEM | WIRE | Communication Wiring |
| SYSTEM | XFMR | Transformer |
