# MWH06 Master Update #13- DD 8.31.2021Submitted

Schedule from Primavera P6, 2020-02-24 to 2022-04-23, data date 2021-08-31, A marks actual dates.

## Calendars

- MSFT-60/60/50: Mon-Sat 07:00-17:00; Sun off. Exceptions (off unless hours are given): 2020-03-07, 2020-03-28, 2020-04-18, 2020-05-09, 2020-05-25, 2020-05-30, 2020-06-20, 2020-07-04, 2020-07-11, 2020-08-01, 2020-08-22, 2020-09-07, 2020-09-12, 2020-10-03, 2020-10-24, 2020-11-14, 2020-11-26 to 2020-11-28, 2020-12-05, 2020-12-24 to 2020-12-26, 2020-12-31 to 2021-01-01, 2021-01-16, 2021-02-06, 2021-02-27, 2021-03-20, 2021-04-10, 2021-05-01, 2021-05-22, 2021-05-31, 2021-06-12, 2021-07-03, 2021-07-05, 2021-07-24, 2021-08-14, 2021-09-04, 2021-09-06, 2021-09-25, 2021-10-16, 2021-11-06, 2021-11-25 to 2021-11-27, 2021-12-18, 2021-12-24 to 2021-12-25, 2021-12-31 to 2022-01-01, 2022-01-08, 2022-01-29.
- 7-8s wo/Holidays Clayco: Mon-Sun 08:00-12:00, 13:00-17:00.
- 7-8s w/Holidays Clayco: Mon-Sun 08:00-12:00, 13:00-17:00. Exceptions (off unless hours are given): 2020-07-03, 2020-12-24, 2021-07-04, 2021-12-25.
- MWH 06 - 60/60/50_p: Mon-Sat 7:00-17:00; Sun off. Exceptions (off unless hours are given): 2020-03-07, 2020-03-28, 2020-04-18, 2020-05-09, 2020-05-25, 2020-05-30, 2020-06-20, 2020-07-04, 2020-07-11, 2020-08-01, 2020-08-22, 2020-09-07, 2020-09-12, 2020-10-03, 2020-10-24, 2020-11-14, 2020-11-26 to 2020-11-28, 2020-12-05, 2020-12-24 to 2020-12-26, 2021-01-01, 2021-01-16, 2021-02-06, 2021-02-15, 2021-02-27, 2021-03-20, 2021-04-10, 2021-05-01, 2021-05-22, 2021-05-31, 2021-06-12, 2021-07-03, 2021-07-05, 2021-07-24, 2021-08-14, 2021-09-04, 2021-09-06, 2021-09-25, 2021-10-16, 2021-11-06, 2021-11-25 to 2021-11-27, 2021-12-18, 2021-12-24 to 2021-12-25, 2022-01-01, 2022-01-22, 2022-02-12, 2022-02-21, 2022-03-05, 2022-03-26, 2022-04-16.
- 7-Day Workweek: Mon-Sun 08:00-16:00.
- 5-10s wo/Holidays Clayco: Mon-Fri 08:00-12:00, 13:00-19:00; Sat-Sun off.

## Resources

| Resource | Group |
| --- | --- |
| VECA Electric | labor |
| Advantage | labor |
| OLSON | labor |
| TCM Mechanical | labor |
| Steel | labor |
| PCI | labor |
| LINX | labor |
| Stetner Crew | labor |

## Schedule

| ID | WBS | Activity | Type | Duration | Start | Finish | Predecessors | Complete | Remaining | Planned start | Planned finish | Total float | Free float | Constraint | MSP Activity ID | COLO | MSFT-Funding Releases | CELL | Fitout Sequence | Q-MWH Building | Q-Colo | Q-General Area | Critical Path | COLO CRITICAL | HOT ITEMS | STEEL ERECTION CRITICAL | Critical Path-1 | MER | Critical Path-2 | WBS | MWH06- TRADES | Critical Path mer to COLO | HRA - Required Permit- Priority-1 | HRA - Required Permit- Priority-2 |
| --- | --- | --- | --- | --- | --- | --- | --- | --- | --- | --- | --- | --- | --- | --- | --- | --- | --- | --- | --- | --- | --- | --- | --- | --- | --- | --- | --- | --- | --- | --- | --- | --- | --- | --- |
|  | 1 | **Executive Summary / Milestones** |  |  | 2020-02-24 | 2022-04-23 |  |  |  |  |  |  |  |  |  |  |  |  |  |  |  |  |  |  |  |  |  |  |  |  |  |  |  |  |
| MWH.06.M1000 |  | Project Start | milestone | 0d | 2020-02-24 A | 2020-02-24 A |  | 100% |  | 2020-04-27 | 2020-04-27 |  |  |  | 17 | 1 | 1B | All |  |  |  |  |  |  |  |  |  |  |  |  |  |  |  |  |
| MWH.06.M1010 |  | MWH06 Admin/COLO1 - LV3 Cx Complete (CO-66: 20-Aug-21) | milestone | 0d | 2021-10-02 | 2021-10-02 | MWH06-10595 FF, MWH-06-01-L3CX-F FF, MWH-06-01-FIR-F, MWH-06-01-EPMS-F, MWH06.S.1540, MWH06.C1.Cx3040, MWH06.C1.Cx2090, MWH06.C1.Cx2150, MWH06.C1.Cx2060, MWH06.AD.Cx2000, MWH06.AD.Cx2020, MWH06.C1.C1350, MWH06.C1.C2330, MWH06.C1.C4310, MWH06.C1.C3320, MWH06-C2.P1800, MWH06.C1.Cx3050, MWH06-1955, MWH-06-01-L3CX-S, MWH-06-01-L1CX-F, MWH-06-01-L1CX-S, MWH06-10530 |  |  |  |  | -33d | 0d | finish on or before 2021-08-20 | 2 | 1 | 1C | Cx-3 | 134 | MWH4 | 01 | N | Cx | 1 | A | 5 | 2 | 5 | 1 | 7 | MER | 1 |  |  |
| MWH.06.M2010 |  | MWH06 COLO2 - LV3 Cx Complete (CO-66: 01-Oct-21) | milestone | 0d | 2021-12-04 | 2021-12-04 | MWH06-10596 FF, MWH-06-02-L3CX-F FF, MWH-06-02-FIR-F, MWH-06-01-FIR-F, MWH-06-02-EPMS-F, MWH-06-01-EPMS-F, MWH06.C2.Cx3040, MWH06.C2.Cx2060, MWH06.C2.Cx2160, MWH06.C2.Cx2090, MWH06.C2.C3150, MWH06.C1.Cx3040, MWH06.C2.Cx3050, MWH06-1956, MWH-06-02-L3CX-S, MWH-06-02-L1CX-F, MWH-06-02-L1CX-S, MWH06-10530 |  |  |  |  | -49d | 0d | finish on or before 2021-10-01 | 18 | 2 |  | Cx-3 | 134 | MWH4 | 01 | N |  |  | A |  |  | 5 | 1 | 7 |  | 2 |  |  |
| MWH.06.M3010 |  | MWH06 COLO3 - LV3 Cx Complete(CO-66: 12-Nov-21) | milestone | 0d | 2022-01-19 | 2022-01-19 | MWH06-10597 FF, MWH-06-03-L3CX-F FF, MWH-06-03-FIR-F, MWH-06-03-EPMS-F, MWH06.C3.Cx3040, MWH06.C3.Cx2060, MWH06.C3.Cx2140, MWH06.C3.Cx2090, MWH06.C3.Cx3050, MWH06-C2.P1900, MWH06-1957, MWH06-C3.P1900, MWH-06-03-L3CX-S, MWH-06-03-L1CX-F, MWH-06-03-L1CX-S, MWH06-10530 |  |  |  |  | -48d | 0.1d | finish on or before 2021-11-12 | 26 | 3 |  | Cx-3 | 134 | MWH4 | 01 | N |  |  | A |  |  | 5 | 1 | 7 |  | 3 |  |  |
| MWH.06.M4010 |  | MWH06 COLO4 - LV3 Cx Complete (CO-66: 28-Dec-21) | milestone | 0d | 2022-02-28 | 2022-02-28 | MWH06-10598 FF, MWH-06-04-L3CX-F FF, MWH-06-04-FIR-F, MWH-06-04-EPMS-F, MWH06.S.1910, MWH06.C4.Cx3040, MWH06.C4.Cx3050, MWH06-C4.P1900, MWH06-1958, MWH06-C4.P1900 FF, MWH-06-04-L3CX-S, MWH-06-04-L1CX-F, MWH-06-04-L1CX-S, MWH06-10530 |  |  |  |  | -48d | 0.1d | finish on or before 2021-12-28 | 35 | 4 |  | Cx-3 | 134 | MWH4 | 01 | N |  | 2,3,4 | A |  |  | 5 | 1 | 7 |  | 4 |  |  |
| MWH.06.M6010 |  | Project Completion | milestone | 0d | 2022-04-23 | 2022-04-23 | MWH06-C1.P2400, MWH06-C1.P2500, MWH06-C2.P2400, MWH06-C2.P2500, MWH06-C3.P2400, MWH06-C3.P2500, MWH06-C4.P2400, MWH06-C4.P2500, MWH06-C1.P2300, MWH06-C2.P2300., MWH06-C3.P2300, MWH06-C4.P2300, MWH06-9715, MWH06-10138, MWH06-10530 |  |  |  |  | 0d |  |  | 41 |  |  | Cx-4 |  |  |  |  |  |  |  |  |  |  |  |  |  |  | 4 | 11 |
|  | 2 | **Construction Summary** |  |  | 2020-08-14 | 2022-02-26 |  |  |  |  |  |  |  |  |  |  |  |  |  |  |  |  |  |  |  |  |  |  |  |  |  |  |  |  |
| MWH06-1955 |  | MWH06 Admin/COLO1 - Fitout Summary | level of effort | 231d | 2020-08-14 A | 2021-10-01 | MWH06.C1.C1000 SS, MWH06-10530 | 89% | 25d | 2020-08-31 | 2021-06-22 | -33d | 0d |  | 13 | 1 |  | CS |  |  |  |  |  |  |  |  |  |  |  |  |  |  |  |  |
| MWH06-1956 |  | MWH06 COLO2 - Fitout Summary | level of effort | 217d | 2020-09-28 A | 2021-12-03 | MWH06.C2.C1010 SS, MWH06-10530 | 66% | 74d | 2020-11-02 | 2021-08-06 | -49d | 0d |  | 22 | 2 |  | CS |  |  |  |  |  |  |  |  |  |  |  |  |  |  |  |  |
| MWH06-1957 |  | MWH06 COLO3 - Fitout Summary | level of effort | 241d | 2020-10-12 A | 2022-01-18 | MWH06.C3.C1010 SS, MWH06-10530 | 56% | 107d | 2020-11-02 | 2021-09-07 | -48d | 0d |  | 31 | 3 |  | CS |  |  |  |  |  |  |  |  |  |  |  |  |  |  |  |  |
| MWH06-1958 |  | MWH06 COLO4 - Fitout Summary | level of effort | 274d | 2020-10-12 A | 2022-02-26 | MWH06.C4.C1020 SS, MWH06-10530 | 49% | 140d | 2020-11-02 | 2021-10-18 | -48d | 0d |  | 36 | 4 |  | CS |  |  |  |  |  |  |  |  |  |  |  |  |  |  |  |  |
|  | 8 | **CONTRACTUAL MILESTONES - DIV 1 SPECS** |  |  | 2020-04-06 | 2022-04-13 |  |  |  |  |  |  |  |  |  |  |  |  |  |  |  |  |  |  |  |  |  |  |  |  |  |  |  |  |
|  | 1 | **ADMIN/ COLO-1** |  |  | 2020-04-06 | 2022-04-13 |  |  |  |  |  |  |  |  |  |  |  |  |  |  |  |  |  |  |  |  |  |  |  |  |  |  |  |  |
| MWH-06-01-EW-S |  | Start Earthworks (Clayco- NIC) | milestone | 0d | 2020-04-06 A | 2020-04-06 A | MWH.06.M1000 | 100% |  | 2021-04-30 | 2021-04-30 |  |  |  |  |  |  |  |  |  |  |  |  |  |  |  |  |  |  |  |  |  |  |  |
| MWH-06-01-MOB-S |  | Start Mobilization | milestone | 0d | 2020-04-06 A | 2020-04-06 A | MWH06-2002 | 100% |  | 2021-04-30 | 2021-04-30 |  |  |  |  |  |  |  |  |  |  |  |  |  |  |  |  |  |  |  |  |  |  |  |
| MWH-06-01-EW-F |  | Complete Earthworks (Clayco- NIC) | milestone | 0d | 2020-04-22 A | 2020-04-22 A | MWH06-2002, MWH06-2029, A1170 | 100% |  | 2021-04-30 | 2021-04-30 |  |  |  |  |  |  |  |  |  |  |  |  |  |  |  |  |  |  |  |  |  |  |  |
| MWH-06-01-FND-S |  | Foundation Start | milestone | 0d | 2020-04-22 A | 2020-04-22 A | MWH06-P1020 | 100% |  | 2020-11-30 | 2020-11-30 |  |  |  |  |  |  |  |  |  |  |  |  |  |  |  |  |  |  |  |  |  |  |  |
| MWH-06-01-PAD-F |  | Complete Building Footprint Pad Ready (Clayco- NIC) | milestone | 0d | 2020-04-22 A | 2020-04-22 A | MWH06-2029, MWH06-2002, A1170 | 100% |  | 2021-04-30 | 2021-04-30 |  |  |  |  |  |  |  |  |  |  |  |  |  |  |  |  |  |  |  |  |  |  |  |
| MWH-06-01-FND-F |  | Foundation Complete | milestone | 0d | 2020-06-05 A | 2020-06-05 A | MWH06.AD.CS1010 | 100% |  | 2020-11-30 | 2020-11-30 |  |  |  |  |  |  |  |  |  |  |  |  |  |  |  |  |  |  |  |  |  |  |  |
| MWH-06-01-SUP-S |  | Start Superstructure | milestone | 0d | 2020-06-26 A | 2020-06-26 A | MWH06-10439, MWH06.AD.CS1000, MWH06.AD.CS1010, MWH06.AD.CS1020, MWH06.C1.CS1000, MWH06.C1.CS1010, MWH06.C1.CS1020 | 100% |  | 2020-11-30 | 2020-11-30 |  |  |  |  |  |  |  |  |  |  |  |  |  |  |  |  |  |  |  |  |  |  |  |
| MWH-06-01-L1CX-S |  | Start of L1 CX | milestone | 0d | 2020-06-27 A | 2020-06-27 A | MWH06.C1.E1220, MWH06.C1.E1140, MWH06.C1.E1150, MWH06.C1.E1230, MWH06.C1.E1280, MWH06.C1.E1390, MWH06.C1.E1290, MWH06.C1.E1400, MWH06.C1.E1000, MWH06.C1.E1080, MWH06.C1.E1030, MWH06.C1.E1100, MWH06.C1.E1120, MWH06.C1.E1260, MWH06.C1.E1240, MWH06.C1.E1160, MWH06.C1.E1060, MWH06.C1.E1040, MWH06.C1.E1180, MWH06.C1.E1200, MWH06.C1.E1340, MWH06.C1.E1360, MWH06.C1.E1430, MWH06.C1.E1450, MWH06-2505, MWH06-2622, MWH06-2504, MWH06-2506, MWH06-2507, MWH06-2508, MWH06-2503, MWH06-2624 | 100% |  | 2021-01-30 | 2021-01-30 |  |  |  |  |  |  |  |  |  |  |  |  |  |  |  |  |  |  |  |  |  |  |  |
| MWH-06-01-ROJ-S |  | Start First ROJ Arrival | milestone | 0d | 2020-07-07 A | 2020-07-07 A | MWH06.S.1000 | 100% |  | 2021-04-30 | 2021-04-30 |  |  |  |  |  |  |  |  |  |  |  |  |  |  |  |  |  |  |  |  |  |  |  |
| MWH-06-01-UGU-F |  | Completion of U/G Utilities (No Elec) | milestone | 0d | 2020-08-22 A | 2020-08-22 A | MWH06.AD.CS1080, MWH06.C1.CS1090 | 100% |  | 2020-11-30 | 2020-11-30 |  |  |  |  |  |  |  |  |  |  |  |  |  |  |  |  |  |  |  |  |  |  |  |
| MWH-06-01-DRY-F |  | Weather Tight | milestone | 0d | 2020-09-22 A | 2020-09-22 A | MWH06.C1.CS1050, MWH06.C1.CS1060, MWH06.C1.CS1070, MWH06.C1.CS1080, MWH06.C1.CS1030, MWH06.C1.CS1040, MWH06.C1.CS1090, MWH06.C1.CS1100, MWH06.C1.CS1110 | 100% |  | 2020-11-30 | 2020-11-30 |  |  |  |  |  |  |  |  |  |  |  |  |  |  |  |  |  |  |  |  |  |  |  |
| MWH-06-01-SOG-F |  | Slab on Grade Complete | milestone | 0d | 2020-09-22 A | 2020-09-22 A | MWH06.AD.CS1100, MWH06.C1.CS1110 | 100% |  | 2020-11-30 | 2020-11-30 |  |  |  |  |  |  |  |  |  |  |  |  |  |  |  |  |  |  |  |  |  |  |  |
| MWH-06-01-MEP-F |  | Complete MEP Rough-in | milestone | 0d | 2020-10-30 A | 2020-10-30 A | MWH06.C1.C4190, MWH06.C1.C4070, MWH06.C1.C2160, MWH06.C1.C2080, MWH06.C1.C3200, MWH06.C1.C3070, MWH06.C1.C1170, MWH06.C1.C1080, MWH06-10530 | 100% |  | 2021-04-30 | 2021-04-30 |  |  |  |  |  |  |  |  |  |  |  |  |  |  |  |  |  |  |  |  |  |  |  |
| MWH-06-01-MER-F |  | MEP Rough-in Complete | milestone | 0d | 2020-10-31 A | 2020-10-31 A | MWH06.C1.C1080, MWH06.C1.C3070, MWH06.C1.C2080, MWH06.C1.C4070, MWH06.C1.C1170, MWH06.C1.C3200, MWH06.C1.C2160, MWH06.C1.C4190 | 100% |  | 2020-11-30 | 2020-11-30 |  |  |  |  |  |  |  |  |  |  |  |  |  |  |  |  |  |  |  |  |  |  |  |
| MWH-06-01-ROJ-F |  | Complete Last ROJ Arrival | milestone | 0d | 2021-01-08 A | 2021-01-08 A | MWH06-2509, MWH06-2621, MWH06-2541, MWH06-2512, MWH06-2510, MWH06-2514, MWH06-2513, MWH06-2511, MWH06.C1.E1460, MWH06.C1.E1440, MWH06.C1.E1370, MWH06.C1.E1350, MWH06.C1.E1250, MWH06.C1.E1270, MWH06.C1.E1170, MWH06.C1.E1130, MWH06.C1.E1010 SF, MWH06.C1.E1110 SF, MWH06.C1.E1020 SF, MWH06.C1.E1090 SF, MWH06.C1.E1010, MWH06.C1.E1110, MWH06.C1.E1020, MWH06.C1.E1090, MWH06.C1.E1420, MWH06.C1.E1410, MWH06.C1.E1310, MWH06.C1.E1300, MWH06.C1.E1470, MWH06.C1.E1380, MWH06.C1.E1330, MWH06.C1.E1320 | 100% |  | 2021-04-30 | 2021-04-30 |  |  |  |  |  |  |  |  |  |  |  |  |  |  |  |  |  |  |  |  |  |  |  |
| MWH-06-01-UGE-F |  | Completion of Utility/MV UG Electrical | milestone | 0d | 2021-02-20 A | 2021-02-20 A | MWH06.C1.C1000, MWH06.C1.C3000, MWH06.C1.C2000, MWH06.C1.C4000, MWH06.S.1370, MWH06.S.1250, MWH06-9738, MWH06.S.1060, MWH06.S.1070, MWH06.S.1150, MWH06.S.1170, MWH06.S.1240, MWH06.S.1580, MWH06.S.1340, MWH06.S.1190, MWH06.S.1270, MWH06.S.1590, MWH06.S.1210, MWH06.S.1550, MWH06.S.1320, MWH06.S.1410, MWH06.S.1470, MWH06.S.1230, MWH06.S.1140, MWH06.S.1180, MWH06.S.1080, MWH06.S.1090, MWH06.S.1020, MWH06.S.1050, MWH06.S.1220, MWH06.S.1350, MWH06.S.1110, MWH06.S.1200, MWH06.S.1260, MWH06.S.1390, MWH06.S.1460, MWH06.S.1620, MWH06.S.1670, MWH06.S.1100, MWH06.S.1280, MWH06.S.1570, MWH06.S.1310, MWH06.S.1380, MWH06.S.1400, MWH06.S.1510, MWH06.S.1720, MWH06.S.1330, MWH06.S.1360, MWH06.S.1440, MWH06.S.1560, MWH06.S.1750, MWH06.S.1290, MWH06.S.1420, MWH06.S.1520, MWH06.S.1710, MWH06.S.1480, MWH06.S.1500, MWH06.S.1640, MWH06.S.1770, MWH06.S.1730, MWH06.S.1740, MWH06.S.1680, MWH06.S.1600, MWH06.S.1450, MWH06-2681, MWH06.S.1490, MWH06-2682, MWH06.S.1610, MWH06-2683, MWH06.S.1780, MWH06-2684, MWH06-2685, MWH06.S.1430, MWH06-2677, MWH06-2678, MWH06.S.1530, MWH06-2679, MWH06.S.1660, MWH06-2680, MWH06.S.1810, MWH06.S.1800, MWH06.S.1690, MWH06.S.1820, MWH06.S.1700, MWH06.S.1760, MWH06.S.1790 | 100% |  | 2021-03-01 | 2021-03-01 |  |  |  |  |  |  |  |  |  |  |  |  |  |  |  |  |  |  |  |  |  |  |  |
| MWH-06-01-GEN-F |  | Generators Ready for Fuel | milestone | 0d | 2021-04-28 A | 2021-04-28 A | MWH06-1967, MWH06.C1.C1420, MWH06.C1.C3410, MWH06.C1.C2430, MWH06.C1.C4440, MWH06-10161, MWH06-10366 | 100% |  | 2021-04-30 | 2021-04-30 |  |  |  |  |  |  |  |  |  |  |  |  |  |  |  |  |  |  |  |  |  |  |  |
| MWH-06-01-FLS-F |  | Fire Alarm Complete | milestone | 0d | 2021-04-30 A | 2021-04-30 A | MWH06.C1.C1160, MWH06.C1.C3180, MWH06.C1.C2410, MWH06.C1.C4170, MWH06.C1.C1180, MWH06.C1.C1190, MWH06.C1.C3170, MWH06.C1.C2220, MWH06.C1.C4200, MWH06.C1.C1350, MWH06.C1.C3320, MWH06.C1.C2330, MWH06.C1.C4310 | 100% |  | 2021-05-20 | 2021-05-20 |  |  |  |  |  |  |  |  |  |  |  |  |  |  |  |  |  |  |  |  |  |  |  |
| MWH-06-01-L2CX-S |  | Start of L2 CX | milestone | 0d | 2021-05-13 A | 2021-05-13 A | MWH06.C1.Cx2000 SS, MWH06-10530, MWH06-10530 SS | 100% |  | 2021-06-01 | 2021-06-01 |  |  |  |  |  |  |  |  |  |  |  |  |  |  |  |  |  |  |  |  |  |  |  |
| MWH-06-01-POW-F |  | Complete Utility Power-ON | milestone | 0d | 2021-05-19 A | 2021-05-19 A | MWH06-10250 FF, MWH06.S.1850, MWH06.S.1840 FF, MWH06-10380 FS+1d, MWH06-10250, MWH06.S.1840, MWH06-10378 | 100% |  |  |  |  |  |  |  |  |  |  |  |  |  |  |  |  |  |  |  |  |  |  |  |  |  |  |
| MWH-06-01-UPW-F |  | Utility Power-ON UMS | milestone | 0d | 2021-05-25 A | 2021-05-25 A | MWH06-10380 FS+1d, MWH06-10250, MWH06.S.1850, MWH06.S.1840, MWH06.S.1840 FF | 100% |  | 2021-05-17 | 2021-05-17 |  |  |  |  | S |  | All |  |  |  |  |  |  |  |  |  |  |  | 6 |  |  |  |  |
| MWH06-10037 |  | Utility Power-ON URS | milestone | 0d | 2021-05-25 A | 2021-05-25 A | MWH06-10250, MWH06.S.1840, MWH06-10378 FS+1d | 100% |  | 2021-05-17 | 2021-05-17 |  |  |  |  | S |  | All |  |  |  |  |  |  |  |  |  |  |  | 6 |  |  |  |  |
| MWH-06-01-CSA-F |  | Complete Interior Finishes/CSA | milestone | 0d | 2021-06-01 A | 2021-06-01 A | MWH06.D4.S1040, MWH06.C1.C1450, MWH06.C1.C3400, MWH06.C1.C2400, MWH06.C1.C4390, MWH06AD-1027, MWH06-10530 | 100% |  | 2021-06-28 | 2021-06-28 |  |  |  |  |  |  |  |  |  |  |  |  |  |  |  |  |  |  |  |  |  |  |  |
| MWH-06-01-INT-F |  | Interior Finishes/CSA Complete | milestone | 0d | 2021-06-01 A | 2021-06-01 A | MWH06.C1.C1450, MWH06.C1.C3400, MWH06.C1.C2400, MWH06.C1.C4390, MWH06.D4.S1040, MWH06AD-1027, MWH06-10530 | 100% |  | 2021-06-28 | 2021-06-28 |  |  |  |  |  |  |  |  |  |  |  |  |  |  |  |  |  |  |  |  |  |  |  |
| MWH-06-01-L1CX-F |  | Completion of all Red Tags (All ROJ) | milestone | 0d | 2021-06-02 A | 2021-06-02 A | MWH-06-01-ROJ-F, MWH06.C1.E1320, MWH06.C1.E1330, MWH06.C1.E1380, MWH06.C1.E1470, MWH06.C1.E1300, MWH06.C1.E1310, MWH06.C1.E1410, MWH06.C1.E1420, MWH06.C1.E1090, MWH06.C1.E1020, MWH06.C1.E1110, MWH06.C1.E1010, MWH06.C1.E1130, MWH06.C1.E1170, MWH06.C1.E1270, MWH06.C1.E1250, MWH06.C1.E1050, MWH06.C1.E1210, MWH06.C1.E1070, MWH06.C1.E1190, MWH06.C1.E1350, MWH06.C1.E1370, MWH06.C1.E1440, MWH06.C1.E1460, MWH06-2511, MWH06-2513, MWH06-2514, MWH06-2510, MWH06-2512, MWH06-2541, MWH06-2621, MWH06-2509, MWH06-10267 | 100% |  | 2021-07-31 | 2021-07-31 |  |  |  |  |  |  |  |  |  |  |  |  |  |  |  |  |  |  |  |  |  |  |  |
| MWH-06-01-L3CX-S |  | L3 CX Start | milestone | 0d | 2021-07-06 A | 2021-07-06 A | MWH06.C1.Cx2170 SS, MWH06.C1.Cx2120 SS, MWH06.C1.Cx2130 SS, MWH06.C1.Cx2110 SS, MWH06.C1.Cx2180 SS, MWH06.C1.Cx2160 SS, MWH06.C1.Cx2140 SS, MWH06.C1.Cx2080 SS, MWH06-10036 SS, MWH06-10035 SS, MWH-06-01-UGE-F, MWH06-10530, MWH06-10530 SS | 100% |  | 2021-08-05 | 2021-08-05 |  |  |  |  |  |  |  |  |  |  |  |  |  |  |  |  |  |  |  |  |  |  |  |
| MWH-06-01-MEQ-S |  | Mechanical Equipment Start-up | milestone | 0d | 2021-07-23 A | 2021-07-23 A | MWH06.C1.Cx2080, MWH06.C1.Cx2110, MWH06-10530, MWH06-10530 SS | 100% |  | 2021-07-31 | 2021-07-31 |  |  |  |  |  |  |  |  |  |  |  |  |  |  |  |  |  |  |  |  |  |  |  |
| MWH-06-01-EPM-F |  | EPMS SAT Complete | milestone | 0d | 2021-07-30 A | 2021-07-30 A | MWH06.C1.Cx2140, MWH06.C1.Cx2160, MWH06.C1.Cx2120, MWH06.C1.Cx2130, MWH06-10530 | 100% |  | 2021-09-01 | 2021-09-01 |  |  | finish on or after 2021-09-01 |  |  |  |  |  |  |  |  |  |  |  |  |  |  |  |  |  |  |  |  |
| MWH-06-01-L2CX-F |  | L2 CX Complete (Yellow Tag) | milestone | 0d | 2021-08-12 A | 2021-08-12 A | MWH06.C1.Cx3010 FF, A1180, MWH06.C1.Cx2000, MWH06.C1.Cx2030, MWH06.C1.Cx2010, MWH06.C1.Cx2050, MWH06-10530 | 100% |  | 2021-08-31 | 2021-08-31 |  |  |  |  |  |  |  |  |  |  |  |  |  |  |  |  |  |  |  |  |  |  |  |
| MWH-06-01-BAS-F |  | BAS SAT Complete | milestone | 0d | 2021-08-28 A | 2021-08-28 A | MWH06.C1.Cx3020, MWH06-10530 | 100% |  | 2021-08-31 | 2021-08-31 |  |  |  |  |  |  |  |  |  |  |  |  |  |  |  |  |  |  |  |  |  |  |  |
| MWH-06-01-EPMS-F |  | Complete EPMS Testing Complete | milestone | 0d | 2021-10-01 | 2021-10-01 | MWH06.C1.Cx3040, MWH06-10530 |  |  |  |  | -33d | 0d |  |  |  |  |  |  |  |  |  |  |  |  |  |  |  |  |  |  |  |  |  |
| MWH-06-01-FIR-F |  | Complete Fire Alarm | milestone | 0d | 2021-10-01 | 2021-10-01 | MWH06.C1.Cx3040, MWH06-10530 |  |  |  |  | -33d | 0d |  |  |  |  |  |  |  |  |  |  |  |  |  |  |  |  |  |  |  |  |  |
| MWH-06-01-L3CX-F |  | L3 CX Complete (Green Tag) | milestone | 0d | 2021-10-02 | 2021-10-02 | MWH06.C1.Cx3050, MWH-06-01-MEQ-S, MWH06-10530 |  |  |  |  | -33d | 0d |  |  | 1 |  |  |  |  |  |  |  |  |  |  |  |  |  |  |  |  |  |  |
| MWH-06-01-BND-F |  | Complete Beneficial Use - Intermediate Distribution Frame (IDF) | milestone | 0d | 2021-10-14 | 2021-10-14 | MWH06.C1.Cx4030, MWH06-10530 |  |  |  |  | -22d | 152d | finish on or before 2021-09-18 |  |  |  |  |  |  |  |  |  |  |  |  |  |  |  |  |  |  |  |  |
| MWH-06-01-BNF-F |  | Complete Beneficial Use - Facility Cable Room (FCR) | milestone | 0d | 2021-10-14 | 2021-10-14 | MWH06.C1.Cx4030, MWH06-10530 |  |  |  |  | -22d | 152d | finish on or before 2021-09-18 |  |  |  |  |  |  |  |  |  |  |  |  |  |  |  |  |  |  |  |  |
| MWH-06-01-BNM-F |  | Complete Beneficial Use - Meet Me Rooms or Entry Rooms (MMR/ER) | milestone | 0d | 2021-10-14 | 2021-10-14 | MWH06.C1.Cx4030, MWH06-10530 |  |  |  |  | -22d | 152d | finish on or before 2021-09-18 |  |  |  |  |  |  |  |  |  |  |  |  |  |  |  |  |  |  |  |  |
| MWH-06-01-BNS-F |  | Complete Beneficial Use - Security Equipment Room (SER) | milestone | 0d | 2021-10-14 | 2021-10-14 | MWH06.C1.Cx4030, MWH06-10530 |  |  |  |  | -22d | 152d | finish on or before 2021-09-18 |  |  |  |  |  |  |  |  |  |  |  |  |  |  |  |  |  |  |  |  |
| MWH-06-01-BRN-F |  | Complete Beneficial Use - Regional Network Gateway (RNG) | milestone | 0d | 2021-10-14 | 2021-10-14 | MWH06.C1.Cx4030, MWH06-10530 |  |  |  |  | -22d | 152d | finish on or before 2021-09-18 |  |  |  |  |  |  |  |  |  |  |  |  |  |  |  |  |  |  |  |  |
| MWH-06-01-BSS-F |  | Complete Beneficial Use - Secure Storage | milestone | 0d | 2021-10-14 | 2021-10-14 | MWH06.C1.Cx4030, MWH06-10530 |  |  |  |  | -22d | 152d | finish on or before 2021-09-18 |  |  |  |  |  |  |  |  |  |  |  |  |  |  |  |  |  |  |  |  |
| MWH-06-01-RNI-F |  | Complete Ready for Network Install | milestone | 0d | 2021-10-14 | 2021-10-14 | MWH06.C1.Cx4030, MWH06-10530 |  |  |  |  | -22d | 12.1d | finish on or before 2021-09-18 |  |  |  |  |  |  |  |  |  |  |  |  |  |  |  |  |  |  |  |  |
| MWH-06-01-IST-F |  | L4 & L5 Complete (White Tag) (Clayco- NIC) | milestone | 0d | 2021-10-29 | 2021-10-29 | MWH06.C1.Cx4000, MWH-06-01-L3CX-F, MWH06-10530 |  |  |  |  | -34d | 25d | finish on or before 2021-09-18 |  |  |  |  |  |  |  |  |  |  |  |  |  |  |  |  |  |  |  |  |
| MWH-06-01-L4CX-F |  | Complete L4 Cx (Blue Tag) (Clayco- NIC) | milestone | 0d | 2021-10-29 | 2021-10-29 | MWH06.C1.Cx4000, MWH06-10530 |  |  |  |  | -34d | 0.1d | finish on or before 2021-09-18 |  |  |  |  |  |  |  |  |  |  |  |  |  |  |  |  |  |  |  |  |
| MWH-06-01-L5CX-F |  | Complete L5/IST (White Tag) (Clayco- NIC) | milestone | 0d | 2021-10-29 | 2021-10-29 | MWH06.C1.Cx4000, MWH06-10530 |  |  |  |  | -34d | 0.1d | finish on or before 2021-09-18 |  |  |  |  |  |  |  |  |  |  |  |  |  |  |  |  |  |  |  |  |
| MWH-06-01-LHP-F |  | Landscaping, Hardscaping Complete | milestone | 0d | 2021-11-12 | 2021-11-12 | MWH06-C1.P2300, MWH06-10530 |  |  |  |  | -30d | 8d | finish on or before 2021-10-07 |  |  |  |  |  |  |  |  |  |  |  |  |  |  |  |  |  |  | 8 | 4 |
| MWH-06-01-SC-F |  | Complete Substantial Completion | milestone | 0d | 2021-11-12 | 2021-11-12 | MWH06.C1.Cx4020, MWH06-10530 |  |  |  |  | -34d | 0d | finish on or before 2021-10-07 |  |  |  |  |  |  |  |  |  |  |  |  |  |  |  |  |  |  |  |  |
| MWH-06-01-SEC-F |  | Security System Complete | milestone | 0d | 2021-11-13 | 2021-11-13 | MWH06.C1.Cx4011, MWH06.C1.Cx4010, MWH06-10530 |  |  |  |  | -31d | 0d | finish on or before 2021-10-07 |  |  |  |  |  |  |  |  |  |  |  |  |  |  |  |  |  |  |  |  |
| MWH-06-01-SSC-F |  | Complete Security System | milestone | 0d | 2021-11-13 | 2021-11-13 | MWH06.C1.Cx4011, MWH06.C1.Cx4010, MWH06-10530 |  |  |  |  | -31d | 0d | finish on or before 2021-10-07 |  |  |  |  |  |  |  |  |  |  |  |  |  |  |  |  |  |  |  |  |
| MWH-06-01-BFA-F |  | Complete Beneficial Use - Facilities Operations Centre (FOC) | milestone | 0d | 2021-11-22 | 2021-11-22 | MWH06.C1.Cx4050, MWH06-10530 |  |  |  |  | -34d | 121d | finish on or before 2021-10-12 |  |  |  |  |  |  |  |  |  |  |  |  |  |  |  |  |  |  |  |  |
| MWH-06-01-BNU-F |  | Complete Beneficial Use | milestone | 0d | 2021-11-22 | 2021-11-22 | MWH06.C1.Cx4050, MWH06-10530 |  |  |  |  | -34d | 121d | finish on or before 2021-10-12 |  |  |  |  |  |  |  |  |  |  |  |  |  |  |  |  |  |  |  |  |
| MWH-06-01-FC-F |  | Final Completion | milestone | 0d | 2021-11-22 | 2021-11-22 | MWH06.C1.Cx4050, MWH06-10530 |  |  |  |  | -34d | 121d | finish on or before 2021-10-12 |  |  |  |  |  |  |  |  |  |  |  |  |  |  |  |  |  |  |  |  |
| MWH-06-01-CO-F |  | Complete Certificate of Occupancy | milestone | 0d | 2022-04-13 | 2022-04-13 | MWH06.C4.Cx4050, MWH06-10530 |  |  |  |  | -51d | 9d | finish on or before 2022-02-14 |  |  |  |  |  |  |  |  |  |  |  |  |  |  |  |  |  |  |  |  |

| ID | WBS | Activity | Type | Duration | Start | Finish | Predecessors | Complete | Planned start | Planned finish | Total float | Free float | Constraint | MSP Activity ID | HRA - Safety Level | COLO | MSFT-Funding Releases | CELL | WBS | HRA - Required Permit- Priority-1 | HRA - Required Permit- Priority-2 |
| --- | --- | --- | --- | --- | --- | --- | --- | --- | --- | --- | --- | --- | --- | --- | --- | --- | --- | --- | --- | --- | --- |
|  | 2 | **COLO-2** |  |  | 2020-04-06 | 2022-04-13 |  |  |  |  |  |  |  |  |  |  |  |  |  |  |  |
| MWH-06-02-EW-S |  | Start Earthworks (Clayco- NIC) | milestone | 0d | 2020-04-06 A | 2020-04-06 A | MWH.06.M1000 | 100% | 2021-04-30 | 2021-04-30 |  |  |  |  |  |  |  |  |  |  |  |
| MWH-06-02-MOB-S |  | Start Mobilization | milestone | 0d | 2020-04-06 A | 2020-04-06 A | MWH-06-04-EW-S, MWH-06-03-EW-S, MWH-06-02-EW-S, MWH-06-01-EW-S, MWH06-2002 | 100% | 2020-04-27 | 2020-04-27 |  |  |  | 59 | 1 | S | 1B | All | A | 4 | 8 |
| MWH-06-02-EW-F |  | Complete Earthworks (Clayco- NIC) | milestone | 0d | 2020-04-22 A | 2020-04-22 A | MWH06-2002, MWH06-2029, A1170 | 100% | 2021-04-30 | 2021-04-30 |  |  |  |  |  |  |  |  |  |  |  |
| MWH-06-02-PAD-F |  | Complete Building Footprint Pad Ready (Clayco- NIC) | milestone | 0d | 2020-04-22 A | 2020-04-22 A | MWH06-2002, MWH06-2029, A1170 | 100% | 2021-04-30 | 2021-04-30 |  |  |  |  |  |  |  |  |  |  |  |
| MWH-06-02-FND-S |  | Foundation Start | milestone | 0d | 2020-05-04 A | 2020-05-04 A | MWH06-P1020 | 100% | 2020-11-30 | 2020-11-30 |  |  |  |  |  |  |  |  |  |  |  |
| MWH-06-02-FND-F |  | Foundation Complete | milestone | 0d | 2020-06-12 A | 2020-06-12 A | MWH06.C1.CS1010 | 100% | 2020-11-30 | 2020-11-30 |  |  |  |  |  |  |  |  |  |  |  |
| MWH-06-02-SUP-S |  | Start Superstructure | milestone | 0d | 2020-07-07 A | 2020-07-07 A | MWH06-10439, MWH06.C1.CS1000, MWH06.C1.CS1010, MWH06.C1.CS1020, MWH06.C2.CS1000, MWH06.C2.CS1010 | 100% | 2020-11-30 | 2020-11-30 |  |  |  |  |  |  |  |  |  |  |  |
| MWH-06-02-UGU-F |  | Completion of U/G Utilities (No Elec) | milestone | 0d | 2020-09-21 A | 2020-09-21 A | MWH06.C2.CS1070 | 100% | 2020-11-30 | 2020-11-30 |  |  |  |  |  |  |  |  |  |  |  |
| MWH-06-02-L1CX-S |  | Start of L1 CX | milestone | 0d | 2020-09-23 A | 2020-09-23 A | MWH-06-02-ROJ-F, MWH06.C2.E1300, MWH06.C2.E1310, MWH06.C2.E1360, MWH06.C2.E1410, MWH06.C2.E1280, MWH06.C2.E1290, MWH06.C2.E1320, MWH06.C2.E1350, MWH06.C2.E1010, MWH06.C2.E1020, MWH06.C2.E1110, MWH06.C2.E1090, MWH06.C2.E1150, MWH06.C2.E1230, MWH06.C2.E1250, MWH06.C2.E1040, MWH06.C2.E1070, MWH06.C2.E1190, MWH06.C2.E1170, MWH06.C2.E1380, MWH06.C2.E1400, MWH06.C2.E1430, MWH06.C2.E1450 | 100% | 2021-02-03 | 2021-02-03 |  |  |  |  |  |  |  |  |  |  |  |
| MWH-06-02-ROJ-S |  | Start First ROJ Arrival | milestone | 0d | 2020-09-23 A | 2020-09-23 A | MWH06.S.1000 | 100% | 2021-04-30 | 2021-04-30 |  |  |  |  |  |  |  |  |  |  |  |
| MWH-06-02-DRY-F |  | Weather Tight | milestone | 0d | 2020-10-07 A | 2020-10-07 A | MWH06.C2.CS1040, MWH06.C2.CS1050, MWH06.C2.CS1060, MWH06.C2.CS1000, MWH06.C2.CS1010, MWH06.C2.CS1020, MWH06.C2.CS1030, MWH06.C2.CS1070, MWH06.C2.CS1080, MWH06.C2.CS1090 | 100% | 2020-11-30 | 2020-11-30 |  |  |  |  |  |  |  |  |  |  |  |
| MWH-06-02-SOG-F |  | Slab on Grade Complete | milestone | 0d | 2020-10-07 A | 2020-10-07 A | MWH06.C2.CS1090 | 100% | 2020-11-30 | 2020-11-30 |  |  |  |  |  |  |  |  |  |  |  |
| MWH-06-02-UGE-F |  | Completion of Utility/MV UG Electrical | milestone | 0d | 2020-10-07 A | 2020-10-07 A | MWH06.S.1570, MWH06.S.1310, MWH06.S.1370, MWH06.C1.C1000, MWH06.C1.C3000, MWH06.C1.C2000, MWH06.C1.C4000, MWH06.S.1730, MWH06.S.1740, MWH06.S.1600, MWH06.S.1680, MWH06.S.1450, MWH06.S.1430, MWH06.S.1490, MWH06.S.1530, MWH06.S.1610, MWH06.S.1660, MWH06.S.1180, MWH06.S.1230, MWH06.S.1270, MWH06.S.1320, MWH06.S.1410, MWH06.S.1210, MWH06.S.1470, MWH06.S.1550, MWH06.S.1590, MWH06.S.1260, MWH06.S.1100, MWH06.S.1020, MWH06.S.1280, MWH06.S.1390, MWH06.S.1460, MWH06.S.1620, MWH06.S.1670, MWH06.S.1110, MWH06.S.1200, MWH06.S.1220, MWH06.S.1050, MWH06.S.1350, MWH06.S.1290, MWH06.S.1420, MWH06.S.1520, MWH06.S.1710, MWH06.S.1380, MWH06.S.1400, MWH06.S.1510, MWH06.S.1720, MWH06.S.1330, MWH06.S.1360, MWH06.S.1440, MWH06.S.1560, MWH06.S.1750, MWH06.S.1480, MWH06.S.1500, MWH06.S.1640, MWH06.S.1770, MWH06.S.1080, MWH06.S.1090, MWH06.S.1250, MWH06.S.1140, MWH06-2677, MWH06-2678, MWH06-2679, MWH06-2681, MWH06-2682, MWH06-2683, MWH06-2685, MWH06-9738 | 100% | 2020-11-30 | 2020-11-30 |  |  |  |  |  |  |  |  |  |  |  |
| MWH-06-02-MEP-F |  | Complete MEP Rough-in | milestone | 0d | 2020-12-09 A | 2020-12-09 A | MWH06.C2.C3190, MWH06.C2.C3030, MWH06.C2.C1160, MWH06.C2.C1090, MWH06.C2.C4150, MWH06.C2.C4020, MWH06.C2.C2140, MWH06.C2.C2070 | 100% | 2021-04-30 | 2021-04-30 |  |  |  |  |  |  |  |  |  |  |  |
| MWH-06-02-MER-F |  | MEP Rough-in Complete | milestone | 0d | 2020-12-09 A | 2020-12-09 A | MWH06.C2.C1090, MWH06.C2.C3030, MWH06.C2.C2070, MWH06.C2.C4020, MWH06.C2.C1160, MWH06.C2.C3190, MWH06.C2.C2140, MWH06.C2.C4150 | 100% | 2021-01-02 | 2021-01-02 |  |  |  |  |  |  |  |  |  |  |  |
| MWH-06-02-ROJ-F |  | Complete Last ROJ Arrival | milestone | 0d | 2021-03-08 A | 2021-03-08 A | MWH06.C2.E1450, MWH06.C2.E1430, MWH06.C2.E1400, MWH06.C2.E1380, MWH06.C2.E1190, MWH06.C2.E1170, MWH06.C2.E1070, MWH06.C2.E1040, MWH06.C2.E1250, MWH06.C2.E1230, MWH06.C2.E1150, MWH06.C2.E1090, MWH06.C2.E1110, MWH06.C2.E1020, MWH06.C2.E1010, MWH06.C2.E1350, MWH06.C2.E1290, MWH06.C2.E1320, MWH06.C2.E1280, MWH06.C2.E1410, MWH06.C2.E1360, MWH06.C2.E1310, MWH06.C2.E1300 | 100% | 2021-04-30 | 2021-04-30 |  |  |  |  |  |  |  |  |  |  |  |
| MWH-06-02-GEN-F |  | Generators Ready for Fuel | milestone | 0d | 2021-04-29 A | 2021-04-29 A | MWH06.C2.C1410, MWH06.C2.C3380, MWH06.C2.C2420, MWH06.C2.C4370 | 100% | 2021-04-30 | 2021-04-30 |  |  |  |  |  |  |  |  |  |  |  |
| MWH-06-02-POW-F |  | Complete Utility Power-ON | milestone | 0d | 2021-05-19 A | 2021-05-19 A | MWH06.S.1850, MWH06.S.1840, MWH-06-01-POW-F, MWH-06-01-UPW-F, MWH06-10037 | 100% | 2021-06-01 | 2021-06-01 |  |  |  |  |  |  |  |  |  |  |  |
| MWH-06-02-UPW-F |  | Utility Power-ON | milestone | 0d | 2021-05-19 A | 2021-05-19 A | MWH-06-01-POW-F, MWH-06-01-UPW-F, MWH06-10037, MWH06.S.1850, MWH06.S.1840 | 100% |  |  |  |  |  |  |  |  |  |  |  |  |  |
| MWH-06-02-FLS-F |  | Fire Alarm Complete | milestone | 0d | 2021-06-01 A | 2021-06-01 A | MWH06.C2.C1190, MWH06.C2.C3180, MWH06.C2.C2230, MWH06.C2.C4100, MWH06.C2.C1170, MWH06.C2.C1220, MWH06.C2.C3200, MWH06.C2.C2210, MWH06.C2.C4160, MWH06.C2.C1240, MWH06.C2.C3220, MWH06.C2.C2240, MWH06.C2.C4200, MWH06-10530 | 100% | 2021-06-28 | 2021-06-28 |  |  |  |  |  |  |  |  |  |  |  |
| MWH-06-02-CSA-F |  | Complete Interior Finishes/CSA | milestone | 0d | 2021-07-19 A | 2021-07-19 A | MWH06.C2.C4360, MWH06.C2.C2400, MWH06.C2.C3420, MWH06.C2.C1420, MWH06-10530 | 100% | 2021-07-31 | 2021-07-31 |  |  |  |  |  |  |  |  |  |  |  |
| MWH-06-02-INT-F |  | Interior Finishes/CSA Complete | milestone | 0d | 2021-07-19 A | 2021-07-19 A | MWH06.C2.C1420, MWH06.C2.C3420, MWH06.C2.C2400, MWH06.C2.C4360, MWH06-10530 | 100% | 2021-07-31 | 2021-07-31 |  |  |  |  |  |  |  |  |  |  |  |
| MWH-06-02-L2CX-S |  | Start of L2 CX | milestone | 0d | 2021-07-21 A | 2021-07-21 A | MWH06.C2.Cx2010 SS, MWH06-10530, MWH06-10530 SS | 100% | 2021-08-31 | 2021-08-31 |  |  |  |  |  |  |  |  |  |  |  |
| MWH-06-02-L1CX-F |  | Completion of all Red Tags (All ROJ) | milestone | 0d | 2021-08-06 A | 2021-08-06 A | MWH-06-02-ROJ-F, MWH06-2527, MWH06.C2.E1300, MWH06.C2.E1310, MWH06.C2.E1360, MWH06.C2.E1410, MWH06.C2.E1280, MWH06.C2.E1290, MWH06.C2.E1320, MWH06.C2.E1350, MWH06.C2.E1010, MWH06.C2.E1020, MWH06.C2.E1110, MWH06.C2.E1090, MWH06.C2.E1150, MWH06.C2.E1230, MWH06.C2.E1250, MWH06.C2.E1040, MWH06.C2.E1070, MWH06.C2.E1190, MWH06.C2.E1170, MWH06.C2.E1380, MWH06.C2.E1400, MWH06.C2.E1430, MWH06.C2.E1450 | 100% | 2021-08-31 | 2021-08-31 |  |  | finish on or after 2021-08-06 |  |  |  |  |  |  |  |  |
| MWH-06-02-L3CX-S |  | L3 CX Start | milestone | 0d | 2021-10-07 | 2021-10-07 | MWH06.C2.Cx2180 SS, MWH06.C2.Cx2150 SS, MWH06.C2.Cx2120 SS, MWH06.C2.Cx2080 SS, MWH06.C2.Cx2190, MWH06.C2.Cx2170 SS, MWH06.C2.Cx2130 SS, MWH06.C2.Cx2110 SS, MWH-06-02-UGE-F, MWH06-10530, MWH06-10530 SS |  |  |  | -4d | 45d |  |  |  |  |  |  |  |  |  |
| MWH-06-02-MEQ-S |  | Mechanical Equipment Start-up | milestone | 0d | 2021-10-07 | 2021-10-07 | MWH06.C2.Cx2130, MWH06.C2.Cx2190, MWH06.C2.Cx2120, MWH06.C2.Cx2180, MWH06-10530, MWH06-10530 SS |  |  |  | -4d | 45d |  |  |  |  |  |  |  |  |  |
| MWH-06-02-EPM-F |  | EPMS SAT Complete | milestone | 0d | 2021-10-07 | 2021-10-07 | MWH06.C2.Cx2090, MWH06.C2.Cx2160, MWH06.C2.Cx2060, MWH06.C2.Cx2140, MWH06.C2.Cx2110, MWH06.C2.Cx2170, MWH06.C2.Cx2080, MWH06.C2.Cx2150, MWH06-10530 |  |  |  | -35d | 14d |  |  |  |  |  |  |  |  |  |
| MWH-06-02-BND-F |  | Complete Beneficial Use - Intermediate Distribution Frame (IDF) | milestone | 0d | 2021-10-14 | 2021-10-14 | MWH06.C1.Cx4030, MWH06-10530 |  |  |  | 6d | 152d | finish on or before 2021-10-23 |  |  |  |  |  |  |  |  |
| MWH-06-02-BNF-F |  | Complete Beneficial Use - Facility Cable Room (FCR) | milestone | 0d | 2021-10-14 | 2021-10-14 | MWH06.C1.Cx4030, MWH06-10530 |  |  |  | 6d | 152d | finish on or before 2021-10-23 |  |  |  |  |  |  |  |  |
| MWH-06-02-BNM-F |  | Complete Beneficial Use - Meet Me Rooms or Entry Rooms (MMR/ER) | milestone | 0d | 2021-10-14 | 2021-10-14 | MWH06.C1.Cx4030, MWH06-10530 |  |  |  | 6d | 152d | finish on or before 2021-10-23 |  |  |  |  |  |  |  |  |
| MWH-06-02-BRN-F |  | Complete Beneficial Use - Regional Network Gateway (RNG) | milestone | 0d | 2021-10-14 | 2021-10-14 | MWH06.C1.Cx4030, MWH06-10530 |  |  |  | 6d | 152d | finish on or before 2021-10-23 |  |  |  |  |  |  |  |  |
| MWH-06-02-BSS-F |  | Complete Beneficial Use - Secure Storage | milestone | 0d | 2021-10-14 | 2021-10-14 | MWH06.C1.Cx4030, MWH06-10530 |  |  |  | 6d | 152d | finish on or before 2021-10-23 |  |  |  |  |  |  |  |  |
| MWH-06-2-BNS-F |  | Complete Beneficial Use - Security Equipment Room (SER) | milestone | 0d | 2021-10-14 | 2021-10-14 | MWH06.C1.Cx4030, MWH06-10530 |  |  |  | 6d | 152d | finish on or before 2021-10-23 |  |  |  |  |  |  |  |  |
| MWH-06-02-L2CX-F |  | L2 CX Complete (Yellow Tag) | milestone | 0d | 2021-10-25 | 2021-10-25 | MWH06.C2.Cx3010 FF, MWH06.C2.Cx2010, MWH06.C2.Cx2050, MWH06.C2.Cx2000, MWH06.C2.Cx2030, MWH06-10530 |  |  |  | -49d | 0d |  |  |  |  |  |  |  |  |  |
| MWH-06-02-BAS-F |  | BAS SAT Complete | milestone | 0d | 2021-10-30 | 2021-10-30 | MWH06.C2.Cx3020, MWH06-10530 |  |  |  | -36d | 13d |  |  |  |  |  |  |  |  |  |
| MWH-06-02-BNU-F |  | Complete Beneficial Use | milestone | 0d | 2021-11-22 | 2021-11-22 | MWH06.C1.Cx4050, MWH06-10530 |  |  |  | -25d | 121d | finish on or before 2021-10-23 |  |  |  |  |  |  |  |  |
| MWH-06-02-EPMS-F |  | Complete EPMS Testing Complete | milestone | 0d | 2021-12-03 | 2021-12-03 | MWH06.C2.Cx3040, MWH06-10530 |  |  |  | -49d | 0d |  |  |  |  |  |  |  |  |  |
| MWH-06-02-FIR-F |  | Complete Fire Alarm | milestone | 0d | 2021-12-03 | 2021-12-03 | MWH06.C2.Cx3040, MWH06-10530 |  |  |  | -49d | 0d |  |  |  |  |  |  |  |  |  |
| MWH-06-02-L3CX-F |  | L3 CX Complete (Green Tag) | milestone | 0d | 2021-12-04 | 2021-12-04 | MWH06.C2.Cx3050, MWH-06-02-MEQ-S, MWH06-10530 |  |  |  | -49d | 0d |  |  |  | 2 |  |  |  |  |  |
| MWH-06-02-RNI-F |  | Complete Ready for Network Install | milestone | 0d | 2021-12-09 | 2021-12-09 | MWH06.C2.Cx4030, MWH06-10530 |  |  |  | -37d | 11.1d | finish on or before 2021-10-23 |  |  |  |  |  |  |  |  |
| MWH-06-02-IST-F |  | L4 & L5 Complete (White Tag) (Clayco- NIC) | milestone | 0d | 2021-12-27 | 2021-12-27 | MWH06.C2.Cx4010, MWH-06-02-L3CX-F, MWH06-10530 |  |  |  | -48d | 30d | finish on or before 2021-10-23 |  |  |  |  |  |  |  |  |
| MWH-06-02-L4CX-F |  | Complete L4 Cx (Blue Tag) (Clayco- NIC) | milestone | 0d | 2021-12-27 | 2021-12-27 | MWH06.C2.Cx4010, MWH06-10530 |  |  |  | -48d | 0.1d | finish on or before 2021-10-23 |  |  |  |  |  |  |  |  |
| MWH-06-02-L5CX-F |  | Complete L5/IST (White Tag) (Clayco- NIC) | milestone | 0d | 2021-12-27 | 2021-12-27 | MWH06.C2.Cx4010, MWH06-10530 |  |  |  | -48d | 0.1d | finish on or before 2021-10-23 |  |  |  |  |  |  |  |  |
| MWH-06-02-SC-F |  | Complete Substantial Completion | milestone | 0d | 2022-01-10 | 2022-01-10 | MWH06.C2.Cx4020, MWH06-10530 |  |  |  | -45d | 0.1d | finish on or before 2021-11-18 |  |  |  |  |  |  |  |  |
| MWH-06-02-LHP-F |  | Landscaping, Hardscaping Complete | milestone | 0d | 2022-01-10 | 2022-01-10 | MWH06-C2.P2300., MWH06-10530 |  |  |  | -36.1d | 10.9d | finish on or before 2021-11-18 |  |  |  |  |  |  | 8 | 4 |
| MWH-06-02-SEC-F |  | Security System Complete | milestone | 0d | 2022-01-15 | 2022-01-15 | MWH06.C2.Cx4001, MWH06.C2.Cx4000, MWH06-10530 |  |  |  | -42d | 0d | finish on or before 2021-11-18 |  |  |  |  |  |  |  |  |
| MWH-06-02-SSC-F |  | Complete Security System | milestone | 0d | 2022-01-15 | 2022-01-15 | MWH06.C2.Cx4001, MWH06.C2.Cx4000, MWH06-10530 |  |  |  | -42d | 0d | finish on or before 2021-11-18 |  |  |  |  |  |  |  |  |
| MWH-06-02-BFA-F |  | Complete Beneficial Use - Facilities Operations Centre (FOC) | milestone | 0d | 2022-01-21 | 2022-01-21 | MWH06.C2.Cx4050, MWH06-10530 |  |  |  | -47d | 78d | finish on or before 2021-11-18 |  |  |  |  |  |  |  |  |
| MWH-06-02-FC-F |  | Final Completion | milestone | 0d | 2022-01-21 | 2022-01-21 | MWH06.C2.Cx4050, MWH06-10530 |  |  |  | -47d | 78d | finish on or before 2021-11-18 |  |  |  |  |  |  |  |  |
| MWH-06-02-CO-F |  | Complete Certificate of Occupancy | milestone | 0d | 2022-04-13 | 2022-04-13 | MWH06.C4.Cx4050, MWH06-10530 |  |  |  | -51d | 9d | finish on or before 2022-02-14 |  |  |  |  |  |  |  |  |

| ID | WBS | Activity | Type | Duration | Start | Finish | Predecessors | Complete | Planned start | Planned finish | Total float | Free float | Constraint | COLO | HRA - Required Permit- Priority-1 | HRA - Required Permit- Priority-2 |
| --- | --- | --- | --- | --- | --- | --- | --- | --- | --- | --- | --- | --- | --- | --- | --- | --- |
|  | 3 | **COLO-3** |  |  | 2020-04-06 | 2022-04-13 |  |  |  |  |  |  |  |  |  |  |
| MWH-06-03-EW-S |  | Start Earthworks (Clayco- NIC) | milestone | 0d | 2020-04-06 A | 2020-04-06 A | MWH.06.M1000 | 100% | 2021-04-30 | 2021-04-30 |  |  |  |  |  |  |
| MWH-06-03-MOB-S |  | Start Mobilization | milestone | 0d | 2020-04-06 A | 2020-04-06 A | MWH06-2002 | 100% | 2021-04-30 | 2021-04-30 |  |  |  |  |  |  |
| MWH-06-03-EW-F |  | Complete Earthworks (Clayco- NIC) | milestone | 0d | 2020-04-22 A | 2020-04-22 A | MWH06-2002, MWH06-2029, A1170 | 100% | 2021-04-30 | 2021-04-30 |  |  |  |  |  |  |
| MWH-06-03-PAD-F |  | Complete Building Footprint Pad Ready | milestone | 0d | 2020-04-22 A | 2020-04-22 A | MWH06-2002, MWH06-2029, A1170 | 100% | 2021-04-30 | 2021-04-30 |  |  |  |  |  |  |
| MWH-06-03-FND-S |  | Foundation Start | milestone | 0d | 2020-06-16 A | 2020-06-16 A | MWH06-P1020 | 100% | 2020-11-30 | 2020-11-30 |  |  |  |  |  |  |
| MWH-06-03-FND-F |  | Foundation Complete | milestone | 0d | 2020-07-18 A | 2020-07-18 A | MWH06.C3.CS1010 | 100% | 2020-11-30 | 2020-11-30 |  |  |  |  |  |  |
| MWH-06-03-SUP-S |  | Start Superstructure | milestone | 0d | 2020-07-23 A | 2020-07-23 A | MWH06.C3.CS1000, MWH06.C3.CS1010 | 100% | 2020-11-30 | 2020-11-30 |  |  |  |  |  |  |
| MWH-06-03-UGU-F |  | Completion of U/G Utilities (No Elec) | milestone | 0d | 2020-10-15 A | 2020-10-15 A | MWH06.C3.CS1070 | 100% | 2020-11-30 | 2020-11-30 |  |  |  |  |  |  |
| MWH-06-03-DRY-F |  | Weather Tight | milestone | 0d | 2020-10-28 A | 2020-10-28 A | MWH06.C3.CS1040, MWH06.C3.CS1050, MWH06.C3.CS1060, MWH06.C3.CS1010, MWH06.C3.CS1020, MWH06.C3.CS1030, MWH06.C3.CS1070, MWH06.C3.CS1080, MWH06.C3.CS1090 | 100% | 2020-11-30 | 2020-11-30 |  |  |  |  |  |  |
| MWH-06-03-SOG-F |  | Slab on Grade Complete | milestone | 0d | 2020-10-28 A | 2020-10-28 A | MWH06.C3.CS1090 | 100% | 2020-11-30 | 2020-11-30 |  |  |  |  |  |  |
| MWH-06-03-UGE-F |  | Completion of Utility/MV UG Electrical | milestone | 0d | 2020-10-31 A | 2020-10-31 A | MWH06.S.1570, MWH06.S.1310, MWH06.S.1370, MWH06.C1.C1000, MWH06.C1.C3000, MWH06.C1.C2000, MWH06.C1.C4000, MWH06.S.1730, MWH06.S.1740, MWH06.S.1600, MWH06.S.1680, MWH06.S.1450, MWH06.S.1430, MWH06.S.1490, MWH06.S.1530, MWH06.S.1610, MWH06.S.1660, MWH06.S.1180, MWH06.S.1230, MWH06.S.1270, MWH06.S.1320, MWH06.S.1410, MWH06.S.1210, MWH06.S.1470, MWH06.S.1550, MWH06.S.1590, MWH06.S.1260, MWH06.S.1100, MWH06.S.1020, MWH06.S.1280, MWH06.S.1390, MWH06.S.1460, MWH06.S.1620, MWH06.S.1670, MWH06.S.1110, MWH06.S.1200, MWH06.S.1220, MWH06.S.1050, MWH06.S.1350, MWH06.S.1290, MWH06.S.1420, MWH06.S.1520, MWH06.S.1710, MWH06.S.1380, MWH06.S.1400, MWH06.S.1510, MWH06.S.1720, MWH06.S.1330, MWH06.S.1360, MWH06.S.1440, MWH06.S.1560, MWH06.S.1750, MWH06.S.1480, MWH06.S.1500, MWH06.S.1640, MWH06.S.1770, MWH06.S.1080, MWH06.S.1090, MWH06.S.1250, MWH06.S.1140, MWH06-2677, MWH06-2678, MWH06-2679, MWH06-2681, MWH06-2682, MWH06-2683, MWH06-2685, MWH06-9738 | 100% | 2020-11-30 | 2020-11-30 |  |  |  |  |  |  |
| MWH-06-03-ROJ-S |  | Start First ROJ Arrival | milestone | 0d | 2020-11-20 A | 2020-11-20 A | MWH06.S.1000 | 100% | 2021-04-30 | 2021-04-30 |  |  |  |  |  |  |
| MWH-06-03-ROJ-F |  | Complete Last ROJ Arrival | milestone | 0d | 2021-04-23 A | 2021-04-23 A | MWH06.C3.E1450, MWH06.C3.E1430, MWH06.C3.E1410, MWH06.C3.E1390, MWH06.C3.E1050, MWH06.C3.E1230, MWH06.C3.E1250, MWH06.C3.E1070, MWH06.C3.E1210, MWH06.C3.E1280, MWH06.C3.E1190, MWH06.C3.E1110, MWH06.C3.E1090, MWH06.C3.E1010, MWH06.C3.E1030, MWH06.C3.E1330, MWH06.C3.E1320, MWH06.C3.E1170, MWH06.C3.E1160, MWH06.C3.E1370, MWH06.C3.E1360, MWH06.C3.E1350, MWH06.C3.E1340 | 100% | 2021-04-30 | 2021-04-30 |  |  |  |  |  |  |
| MWH-06-03-POW-F |  | Complete Utility Power-ON | milestone | 0d | 2021-05-19 A | 2021-05-19 A | MWH06.S.1850, MWH06.S.1840, MWH-06-01-POW-F, MWH-06-01-UPW-F | 100% | 2021-06-01 | 2021-06-01 |  |  |  |  |  |  |
| MWH-06-03-UPW-F |  | Utility Power-ON | milestone | 0d | 2021-05-19 A | 2021-05-19 A | MWH-06-01-POW-F, MWH-06-01-UPW-F, MWH06.S.1850, MWH06.S.1840 | 100% | 2021-06-01 | 2021-06-01 |  |  |  |  |  |  |
| MWH-06-03-L1CX-S |  | Start of L1 CX | milestone | 0d | 2021-06-01 A | 2021-06-01 A | MWH-06-03-ROJ-F, MWH06.C3.E1340, MWH06.C3.E1350, MWH06.C3.E1360, MWH06.C3.E1370, MWH06.C3.E1160, MWH06.C3.E1170, MWH06.C3.E1330, MWH06.C3.E1320, MWH06.C3.E1030, MWH06.C3.E1010, MWH06.C3.E1090, MWH06.C3.E1110, MWH06.C3.E1190, MWH06.C3.E1280, MWH06.C3.E1210, MWH06.C3.E1070, MWH06.C3.E1050, MWH06.C3.E1250, MWH06.C3.E1230, MWH06.C3.E1390, MWH06.C3.E1410, MWH06.C3.E1430, MWH06.C3.E1450 | 100% | 2021-06-28 | 2021-06-28 |  |  |  |  |  |  |
| MWH-06-03-MEP-F |  | Complete MEP Rough-in | milestone | 0d | 2021-06-01 A | 2021-06-01 A | MWH06-9765, MWH06-9764, MWH06-9763, MWH06-9762, MWH06.C3.C4110, MWH06.C3.C4220, MWH06.C3.C4060, MWH06.C3.C2070, MWH06.C3.C2240, MWH06.C3.C2090, MWH06.C3.C3090, MWH06.C3.C3180, MWH06.C3.C3060, MWH06.C3.C1070, MWH06.C3.C1210, MWH06.C3.C1090, MWH06-10530 | 100% | 2021-06-28 | 2021-06-28 |  |  |  |  |  |  |
| MWH-06-03-MER-F |  | MEP Rough-in Complete | milestone | 0d | 2021-06-01 A | 2021-06-01 A | MWH06.C3.C1090, MWH06.C3.C1210, MWH06.C3.C4060, MWH06.C3.C4220, MWH06.C3.C2240, MWH06.C3.C2090, MWH06.C3.C3060, MWH06.C3.C3180, MWH06.C3.C1070, MWH06-9764, MWH06.C3.C2070, MWH06-9765, MWH06.C3.C4110, MWH06.C3.C3090, MWH06-9763, MWH06-9762, MWH06-10530 | 100% | 2021-06-28 | 2021-06-28 |  |  |  |  |  |  |
| MWH-06-03-GEN-F |  | Generators Ready for Fuel | milestone | 0d | 2021-07-01 A | 2021-07-01 A | MWH06.C3.C1380, MWH06.C3.C3330, MWH06.C3.C2380, MWH06.C3.C4370, MWH06.C3.C1380 SS, MWH06.C3.C3330 SS, MWH06.C3.C2380 SS, MWH06.C3.C4370 SS, MWH06-10530 | 100% |  |  |  |  |  |  |  |  |
| MWH-06-03-CSA-F |  | Complete Interior Finishes/CSA | milestone | 0d | 2021-08-12 A | 2021-08-12 A | MWH06.C3.C1450, MWH06.C3.C4450, MWH06.C3.C3410, MWH06.C3.C2450, MWH06-10530 | 100% | 2021-08-31 | 2021-08-31 |  |  | finish on or before 2021-08-26 |  |  |  |
| MWH-06-03-INT-F |  | Interior Finishes/CSA Complete | milestone | 0d | 2021-08-12 A | 2021-08-12 A | MWH06.C3.C1450, MWH06.C3.C3410, MWH06.C3.C2450, MWH06.C3.C4450, MWH06-10530 | 100% | 2021-08-31 | 2021-08-31 |  |  | finish on or before 2021-08-26 |  |  |  |
| MWH-06-03-L1CX-F |  | Completion of all Red Tags (All ROJ) | milestone | 0d | 2021-08-30 A | 2021-08-30 A | MWH-06-03-ROJ-F, MWH06.C3.E1390, MWH06.C3.E1410, MWH06.C3.E1430, MWH06.C3.E1450, MWH06.C3.E1230, MWH06.C3.E1250, MWH06.C3.E1050, MWH06.C3.E1070, MWH06.C3.E1210, MWH06.C3.E1280, MWH06.C3.E1190, MWH06.C3.E1110, MWH06.C3.E1090, MWH06.C3.E1010, MWH06.C3.E1030, MWH06.C3.E1320, MWH06.C3.E1330, MWH06.C3.E1170, MWH06.C3.E1160, MWH06.C3.E1370, MWH06.C3.E1360, MWH06.C3.E1350, MWH06.C3.E1340 | 100% | 2021-09-01 | 2021-09-01 |  |  | finish on or after 2021-09-01 |  |  |  |
| MWH-06-03-L2CX-S |  | Start of L2 CX | milestone | 0d | 2021-08-31 | 2021-08-31 | MWH06.C3.Cx2000 SS, MWH06-10530, MWH06-10530 SS |  |  |  | -15d | 10d |  |  |  |  |
| MWH-06-03-BND-F |  | Complete Beneficial Use - Intermediate Distribution Frame (IDF) | milestone | 0d | 2021-10-14 | 2021-10-14 | MWH06.C1.Cx4030, MWH06-10530 |  |  |  | 38d | 152d | finish on or before 2021-12-04 |  |  |  |
| MWH-06-03-BNF-F |  | Complete Beneficial Use - Facility Cable Room (FCR) | milestone | 0d | 2021-10-14 | 2021-10-14 | MWH06.C1.Cx4030, MWH06-10530 |  |  |  | 38d | 152d | finish on or before 2021-12-04 |  |  |  |
| MWH-06-03-BNM-F |  | Complete Beneficial Use - Meet Me Rooms or Entry Rooms (MMR/ER) | milestone | 0d | 2021-10-14 | 2021-10-14 | MWH06.C1.Cx4030, MWH06-10530 |  |  |  | 38d | 152d | finish on or before 2021-12-04 |  |  |  |
| MWH-06-03-BNS-F |  | Complete Beneficial Use - Security Equipment Room (SER) | milestone | 0d | 2021-10-14 | 2021-10-14 | MWH06.C1.Cx4030, MWH06-10530 |  |  |  | 38d | 152d | finish on or before 2021-12-04 |  |  |  |
| MWH-06-03-BRN-F |  | Complete Beneficial Use - Regional Network Gateway (RNG) | milestone | 0d | 2021-10-14 | 2021-10-14 | MWH06.C1.Cx4030, MWH06-10530 |  |  |  | 38d | 152d | finish on or before 2021-12-04 |  |  |  |
| MWH-06-03-BSS-F |  | Complete Beneficial Use - Secure Storage | milestone | 0d | 2021-10-14 | 2021-10-14 | MWH06.C1.Cx4030, MWH06-10530 |  |  |  | 38d | 152d | finish on or before 2021-12-04 |  |  |  |
| MWH-06-03-L3CX-S |  | L3 CX Start | milestone | 0d | 2021-10-18 | 2021-10-18 | MWH06.C3.Cx2190 SS, MWH06.C3.Cx2170 SS, MWH06.C3.Cx2130 SS, MWH06.C3.Cx2120 SS, MWH06.C3.Cx2180 SS, MWH06.C3.Cx2160 SS, MWH06.C3.Cx2110 SS, MWH06.C3.Cx2070 SS, MWH-06-03-UGE-F, MWH06-10530, MWH06-10530 SS |  |  |  | 22d | 70d |  |  |  |  |
| MWH-06-03-EPM-F |  | EPMS SAT Complete | milestone | 0d | 2021-10-27 | 2021-10-27 | MWH06.C3.Cx2060, MWH06.C3.Cx2140, MWH06.C3.Cx2090, MWH06.C3.Cx2150, MWH06.C3.Cx2070, MWH06.C3.Cx2160, MWH06.C3.Cx2120, MWH06.C3.Cx2170, MWH06-10530 |  |  |  | -17d | 31d |  |  |  |  |
| MWH-06-03-MEQ-S |  | Mechanical Equipment Start-up | milestone | 0d | 2021-11-01 | 2021-11-01 | MWH06.C3.Cx2110, MWH06.C3.Cx2180, MWH06.C3.Cx2130, MWH06.C3.Cx2190, MWH06-10530, MWH06-10530 SS |  |  |  | 10d | 58d |  |  |  |  |
| MWH-06-03-L2CX-F |  | L2 CX Complete (Yellow Tag) | milestone | 0d | 2021-11-20 | 2021-11-20 | MWH06.C3.Cx3010, MWH06.C3.Cx2000, MWH06.C3.Cx2030, MWH06.C3.Cx2010, MWH06.C3.Cx2050, MWH06-10530, MWH06-10530 SS |  |  |  | -36d | 12d |  |  |  |  |
| MWH-06-03-BAS-F |  | BAS SAT Complete | milestone | 0d | 2021-11-24 | 2021-11-24 | MWH06.C3.Cx3020, MWH06-10530 |  |  |  | -22d | 26d |  |  |  |  |
| MWH-06-03-EPMS-F |  | Complete EPMS Testing Complete | milestone | 0d | 2022-01-18 | 2022-01-18 | MWH06.C3.Cx3040, MWH06-10530 |  |  |  | -48d | 0d |  |  |  |  |
| MWH-06-03-FIR-F |  | Complete Fire Alarm | milestone | 0d | 2022-01-18 | 2022-01-18 | MWH06.C3.Cx3040, MWH06-10530 |  |  |  | -48d | 0d |  |  |  |  |
| MWH-06-03-L3CX-F |  | L3 CX Complete (Green Tag) | milestone | 0d | 2022-01-19 | 2022-01-19 | MWH06.C3.Cx3050, MWH-06-03-MEQ-S, MWH06-10530 |  |  |  | -48d | 0d |  | 3 |  |  |
| MWH-06-03-RNI-F |  | Complete Ready for Network Install | milestone | 0d | 2022-01-25 | 2022-01-25 | MWH06.C3.Cx4030, MWH06-10530 |  |  |  | -39d | 11.1d | finish on or before 2021-12-04 |  |  |  |
| MWH-06-03-BFA-F |  | Complete Beneficial Use - Facilities Operations Centre (FOC) | milestone | 0d | 2022-02-08 | 2022-02-08 | MWH06.C3.Cx4000 FF, MWH06-10530 |  |  |  | -35d | 64d | finish on or before 2021-12-23 |  |  |  |
| MWH-06-03-BNU-F |  | Complete Beneficial Use | milestone | 0d | 2022-02-08 | 2022-02-08 | MWH06.C3.Cx4000 FF, MWH06-10530 |  |  |  | -35d | 64d | finish on or before 2021-12-23 |  |  |  |
| MWH-06-03-FC-F |  | Final Completion | milestone | 0d | 2022-02-08 | 2022-02-08 | MWH06.C3.Cx4000 FF, MWH06-10530 |  |  |  | -35d | 64d | finish on or before 2021-12-23 |  |  |  |
| MWH-06-03-FLS-F |  | Fire Alarm Complete | milestone | 0d | 2022-02-08 | 2022-02-08 | MWH06.C3.Cx4000 FF, MWH06.C3.C1200, MWH06.C3.C3110, MWH06.C3.C2190, MWH06.C3.C4180, MWH06.C3.C1080, MWH06.C3.C1150, MWH06.C3.C3100, MWH06.C3.C2150, MWH06.C3.C4120, MWH06.C3.C1340, MWH06.C3.C3300, MWH06.C3.C2320, MWH06.C3.C4330, MWH06-10530 |  |  |  | 64d | 29d |  |  |  |  |
| MWH-06-03-IST-F |  | L4 & L5 Complete (White Tag) (Clayco- NIC) | milestone | 0d | 2022-02-08 | 2022-02-08 | MWH06.C3.Cx4000, MWH-06-03-L3CX-F, MWH06-10530 |  |  |  | -50d | 29d | finish on or before 2021-12-04 |  |  |  |
| MWH-06-03-L4CX-F |  | Complete L4 Cx (Blue Tag) (Clayco- NIC) | milestone | 0d | 2022-02-08 | 2022-02-08 | MWH06.C3.Cx4000, MWH06-10530 |  |  |  | -50d | 0.1d | finish on or before 2021-12-04 |  |  |  |
| MWH-06-03-L5CX-F |  | Complete L5/IST (White Tag) (Clayco- NIC) | milestone | 0d | 2022-02-08 | 2022-02-08 | MWH06.C3.Cx4000, MWH06-10530 |  |  |  | -50d | 0.1d | finish on or before 2021-12-04 |  |  |  |
| MWH-06-03-LHP-F |  | Landscaping, Hardscaping Complete | milestone | 0d | 2022-02-22 | 2022-02-22 | MWH06-C3.P2300, MWH06-10530 |  |  |  | -47d | 10d | finish on or before 2021-12-23 |  | 8 | 4 |
| MWH-06-03-SC-F |  | Complete Substantial Completion | milestone | 0d | 2022-02-22 | 2022-02-22 | MWH06.C3.Cx4020, MWH06-10530 |  |  |  | -47d | 0d | finish on or before 2021-12-23 |  |  |  |
| MWH-06-03-SEC-F |  | Security System Complete | milestone | 0d | 2022-02-23 | 2022-02-23 | MWH06.C3.Cx4011, MWH06.C3.Cx4010, MWH06-10530 |  |  |  | -48d | 0d | finish on or before 2021-12-23 |  |  |  |
| MWH-06-03-SSC-F |  | Complete Security System | milestone | 0d | 2022-02-23 | 2022-02-23 | MWH06.C3.Cx4011, MWH06.C3.Cx4010, MWH06-10530 |  |  |  | -48d | 0d | finish on or before 2021-12-23 |  |  |  |
| MWH-06-03-CO-F |  | Complete Certificate of Occupancy | milestone | 0d | 2022-04-13 | 2022-04-13 | MWH06.C4.Cx4050, MWH06-10530 |  |  |  | 9d |  |  |  |  |  |

| ID | WBS | Activity | Type | Duration | Start | Finish | Predecessors | Complete | Planned start | Planned finish | Total float | Free float | Constraint | HRA - Required Permit- Priority-1 | HRA - Required Permit- Priority-2 | COLO |
| --- | --- | --- | --- | --- | --- | --- | --- | --- | --- | --- | --- | --- | --- | --- | --- | --- |
|  | 4 | **COLO-4** |  |  | 2020-04-06 | 2022-04-13 |  |  |  |  |  |  |  |  |  |  |
| MWH-06-04-EW-S |  | Start Earthworks (Clayco- NIC) | milestone | 0d | 2020-04-06 A | 2020-04-06 A | MWH.06.M1000 | 100% | 2021-04-30 | 2021-04-30 |  |  |  |  |  |  |
| MWH-06-04-MOB-S |  | Start Mobilization | milestone | 0d | 2020-04-06 A | 2020-04-06 A | MWH06-2002 | 100% | 2021-04-30 | 2021-04-30 |  |  |  |  |  |  |
| MWH-06-04-EW-F |  | Complete Earthworks (Clayco- NIC) | milestone | 0d | 2020-04-22 A | 2020-04-22 A | MWH06-2002, MWH06-2029, A1170 | 100% | 2021-04-30 | 2021-04-30 |  |  |  |  |  |  |
| MWH-06-04-PAD-F |  | Complete Building Footprint Pad Ready (Clayco- NIC) | milestone | 0d | 2020-04-22 A | 2020-04-22 A | MWH06-2002, MWH06-2029, A1170 | 100% | 2021-04-30 | 2021-04-30 |  |  |  |  |  |  |
| MWH-06-04-FND-S |  | Foundation Start | milestone | 0d | 2020-06-23 A | 2020-06-23 A | MWH06-P1020 | 100% | 2020-11-30 | 2020-11-30 |  |  |  |  |  |  |
| MWH-06-04-FND-F |  | Foundation Complete | milestone | 0d | 2020-07-30 A | 2020-07-30 A | MWH06.C4.CS1000 | 100% | 2020-11-30 | 2020-11-30 |  |  |  |  |  |  |
| MWH-06-04-SUP-S |  | Start Superstructure | milestone | 0d | 2020-08-08 A | 2020-08-08 A | MWH06.C4.CS1000, MWH06.C4.CS1010 | 100% | 2020-11-30 | 2020-11-30 |  |  |  |  |  |  |
| MWH-06-04-UGU-F |  | Completion of U/G Utilities (No Elec) | milestone | 0d | 2020-10-15 A | 2020-10-15 A | MWH06.C4.CS1070 | 100% | 2020-11-30 | 2020-11-30 |  |  |  |  |  |  |
| MWH-06-04-DRY-F |  | Weather Tight | milestone | 0d | 2020-11-04 A | 2020-11-04 A | MWH06.C4.CS1040, MWH06.C4.CS1050, MWH06.C4.CS1060, MWH06.C4.CS1000, MWH06.C4.CS1010, MWH06.C4.CS1020, MWH06.C4.CS1030, MWH06.C4.CS1070, MWH06.C4.CS1080, MWH06.C4.CS1090 | 100% | 2020-11-30 | 2020-11-30 |  |  |  |  |  |  |
| MWH-06-04-SOG-F |  | Slab on Grade Complete | milestone | 0d | 2020-11-04 A | 2020-11-04 A | MWH06.C4.CS1090 | 100% | 2020-11-30 | 2020-11-30 |  |  |  |  |  |  |
| MWH-06-04-UGE-F |  | Completion of Utility/MV UG Electrical | milestone | 0d | 2020-11-07 A | 2020-11-07 A | MWH06.S.1570, MWH06.S.1310, MWH06.S.1370, MWH06.C1.C1000, MWH06.C1.C3000, MWH06.C1.C2000, MWH06.C1.C4000, MWH06.S.1730, MWH06.S.1740, MWH06.S.1600, MWH06.S.1680, MWH06.S.1450, MWH06.S.1430, MWH06.S.1490, MWH06.S.1530, MWH06.S.1610, MWH06.S.1660, MWH06.S.1180, MWH06.S.1230, MWH06.S.1270, MWH06.S.1320, MWH06.S.1410, MWH06.S.1210, MWH06.S.1470, MWH06.S.1550, MWH06.S.1590, MWH06.S.1260, MWH06.S.1100, MWH06.S.1020, MWH06.S.1280, MWH06.S.1390, MWH06.S.1460, MWH06.S.1620, MWH06.S.1670, MWH06.S.1110, MWH06.S.1200, MWH06.S.1220, MWH06.S.1050, MWH06.S.1350, MWH06.S.1290, MWH06.S.1420, MWH06.S.1520, MWH06.S.1710, MWH06.S.1380, MWH06.S.1400, MWH06.S.1510, MWH06.S.1720, MWH06.S.1330, MWH06.S.1360, MWH06.S.1440, MWH06.S.1560, MWH06.S.1750, MWH06.S.1480, MWH06.S.1500, MWH06.S.1640, MWH06.S.1770, MWH06.S.1080, MWH06.S.1090, MWH06.S.1250, MWH06.S.1140, MWH06-2677, MWH06-2678, MWH06-2679, MWH06-2681, MWH06-2682, MWH06-2683, MWH06-2685, MWH06-9738 | 100% | 2020-11-30 | 2020-11-30 |  |  |  |  |  |  |
| MWH-06-04-L1CX-S |  | Start of L1 CX | milestone | 0d | 2020-12-12 A | 2020-12-12 A | MWH-06-04-ROJ-F, MWH06.C4.E1360, MWH06.C4.E1370, MWH06.C4.E1380, MWH06.C4.E1390, MWH06.C4.E1280, MWH06.C4.E1310, MWH06.C4.E1340, MWH06.C4.E1350, MWH06.C4.E1020, MWH06.C4.E1010, MWH06.C4.E1090, MWH06.C4.E1110, MWH06.C4.E1150, MWH06.C4.E1250, MWH06.C4.E1170, MWH06.C4.E1270, MWH06.C4.E1050, MWH06.C4.E1070, MWH06.C4.E1210, MWH06.C4.E1190, MWH06.C4.E1410, MWH06.C4.E1430, MWH06.C4.E1450, MWH06.C4.E1470 | 100% | 2021-02-11 | 2021-02-11 |  |  |  |  |  |  |
| MWH-06-04-ROJ-S |  | Start First ROJ Arrival | milestone | 0d | 2020-12-12 A | 2020-12-12 A | MWH06.S.1000 | 100% | 2021-04-30 | 2021-04-30 |  |  |  |  |  |  |
| MWH-06-04-ROJ-F |  | Complete Last ROJ Arrival | milestone | 0d | 2021-05-10 A | 2021-05-10 A | MWH06.C4.E1470, MWH06.C4.E1430, MWH06.C4.E1450, MWH06.C4.E1410, MWH06.C4.E1070, MWH06.C4.E1190, MWH06.C4.E1210, MWH06.C4.E1050, MWH06.C4.E1270, MWH06.C4.E1170, MWH06.C4.E1250, MWH06.C4.E1150, MWH06.C4.E1110, MWH06.C4.E1090, MWH06.C4.E1010, MWH06.C4.E1020, MWH06.C4.E1350, MWH06.C4.E1340, MWH06.C4.E1310, MWH06.C4.E1280, MWH06.C4.E1390, MWH06.C4.E1370, MWH06.C4.E1380, MWH06.C4.E1360 | 100% | 2021-07-31 | 2021-07-31 |  |  |  |  |  |  |
| MWH-06-04-POW-F |  | Complete Utility Power-ON | milestone | 0d | 2021-05-19 A | 2021-05-19 A | MWH06.S.1850, MWH06.S.1840, MWH-06-01-POW-F, MWH-06-01-UPW-F | 100% | 2021-06-01 | 2021-06-01 |  |  |  |  |  |  |
| MWH-06-04-UPW-F |  | Utility Power-ON | milestone | 0d | 2021-05-19 A | 2021-05-19 A | MWH-06-01-POW-F, MWH-06-01-UPW-F, MWH06.S.1850, MWH06.S.1840 | 100% | 2021-06-01 | 2021-06-01 |  |  |  |  |  |  |
| MWH-06-04-MEP-F |  | Complete MEP Rough-in | milestone | 0d | 2021-07-07 A | 2021-07-07 A | MWH06.C4.C4150, MWH06.C4.C4140, MWH06.C4.C4180, MWH06.C4.C4130, MWH06.C4.C2150, MWH06.C4.C2130, MWH06.C4.C2190, MWH06.C4.C2140, MWH06-9769, MWH06-9768, MWH06-9767, MWH06.C4.C3150, MWH06.C4.C3140, MWH06.C4.C3180, MWH06.C4.C3130, MWH06.C4.C1130, MWH06.C4.C1190, MWH06.C4.C1140, MWH06.C4.C1010, MWH06-10530 | 100% | 2021-07-31 | 2021-07-31 |  |  |  |  |  |  |
| MWH-06-04-MER-F |  | MEP Rough-in Complete | milestone | 0d | 2021-07-07 A | 2021-07-07 A | MWH06.C4.C1190, MWH06.C4.C1140, MWH06.C4.C3130, MWH06.C4.C3180, MWH06.C4.C2190, MWH06.C4.C2140, MWH06.C4.C4130, MWH06.C4.C4180, MWH06.C4.C1130, MWH06.C4.C1010, MWH06.C4.C3140, MWH06-9767, MWH06.C4.C3150, MWH06.C4.C2130, MWH06.C4.C2150, MWH06-9768, MWH06.C4.C4140, MWH06.C4.C4150, MWH06-9769, MWH06-10530 | 100% | 2021-07-31 | 2021-07-31 |  |  |  |  |  |  |
| MWH-06-04-FLS-F |  | Fire Alarm Complete | milestone | 0d | 2021-08-31 | 2021-08-31 | MWH06.C4.C1390, MWH06.C4.C3370, MWH06.C4.C2400, MWH06.C4.C4360, MWH06.C4.C1050, MWH06.C4.C1090, MWH06.C4.C3090, MWH06.C4.C2090, MWH06.C4.C4090, MWH06.C4.C1330, MWH06.C4.C3330, MWH06.C4.C2310, MWH06.C4.C4300, MWH06-10530 |  |  |  | 188d |  |  |  |  |  |
| MWH-06-04-GEN-F |  | Generators Ready for Fuel | milestone | 0d | 2021-08-31 | 2021-08-31 | MWH06.C4.C1380, MWH06.C4.C3380, MWH06.C4.C2380, MWH06.C4.C4370, MWH06-10530 |  |  |  | 62d | 110d |  |  |  |  |
| MWH-06-04-L1CX-F |  | Completion of all Red Tags (All ROJ) | milestone | 0d | 2021-10-01 | 2021-10-01 | MWH-06-04-ROJ-F, MWH06.C4.E1360, MWH06.C4.E1370, MWH06.C4.E1380, MWH06.C4.E1390, MWH06.C4.E1280, MWH06.C4.E1310, MWH06.C4.E1340, MWH06.C4.E1350, MWH06.C4.E1020, MWH06.C4.E1010, MWH06.C4.E1090, MWH06.C4.E1110, MWH06.C4.E1150, MWH06.C4.E1250, MWH06.C4.E1170, MWH06.C4.E1270, MWH06.C4.E1050, MWH06.C4.E1070, MWH06.C4.E1210, MWH06.C4.E1190, MWH06.C4.E1410, MWH06.C4.E1430, MWH06.C4.E1450, MWH06.C4.E1470 |  |  |  | 68d | 116d | finish on or after 2021-10-01 |  |  |  |
| MWH-06-04-CSA-F |  | Complete Interior Finishes/CSA | milestone | 0d | 2021-10-07 | 2021-10-07 | MWH06.C4.C1450, MWH06.C4.C4450, MWH06.C4.C2450, MWH06.C4.C3450, MWH06-10530 |  |  |  | 158d |  |  |  |  |  |
| MWH-06-04-INT-F |  | Interior Finishes/CSA Complete | milestone | 0d | 2021-10-07 | 2021-10-07 | MWH06.C4.C1450, MWH06.C4.C3450, MWH06.C4.C2450, MWH06.C4.C4450, MWH06-10530 |  |  |  | 158d |  |  |  |  |  |
| MWH-06-04-L2CX-S |  | Start of L2 CX | milestone | 0d | 2021-10-13 | 2021-10-13 | MWH06.C4.Cx2000 SS, MWH06-10530, MWH06-10530 SS |  |  |  | -16d | 10d |  |  |  |  |
| MWH-06-04-BND-F |  | Complete Beneficial Use - Intermediate Distribution Frame (IDF) | milestone | 0d | 2021-10-14 | 2021-10-14 | MWH06.C1.Cx4030, MWH06-10530 |  |  |  | 152d |  |  |  |  |  |
| MWH-06-04-BNF-F |  | Complete Beneficial Use - Facility Cable Room (FCR) | milestone | 0d | 2021-10-14 | 2021-10-14 | MWH06.C1.Cx4030, MWH06-10530 |  |  |  | 152d |  |  |  |  |  |
| MWH-06-04-BNM-F |  | Complete Beneficial Use - Meet Me Rooms or Entry Rooms (MMR/ER) | milestone | 0d | 2021-10-14 | 2021-10-14 | MWH06.C1.Cx4030, MWH06-10530 |  |  |  | 152d |  |  |  |  |  |
| MWH-06-04-BNS-F |  | Complete Beneficial Use - Security Equipment Room (SER) | milestone | 0d | 2021-10-14 | 2021-10-14 | MWH06.C1.Cx4030, MWH06-10530 |  |  |  | 152d |  |  |  |  |  |
| MWH-06-04-BRN-F |  | Complete Beneficial Use - Regional Network Gateway (RNG) | milestone | 0d | 2021-10-14 | 2021-10-14 | MWH06.C1.Cx4030, MWH06-10530 |  |  |  | 152d |  |  |  |  |  |
| MWH-06-04-BSS-F |  | Complete Beneficial Use - Secure Storage | milestone | 0d | 2021-10-14 | 2021-10-14 | MWH06.C1.Cx4030, MWH06-10530 |  |  |  | 152d |  |  |  |  |  |
| MWH-06-04-L3CX-S |  | L3 CX Start | milestone | 0d | 2021-11-19 | 2021-11-19 | MWH06.C4.Cx2190 SS, MWH06.C4.Cx2180 SS, MWH06.C4.Cx2130 SS, MWH06.C4.Cx2120 SS, MWH06.C4.Cx2160 SS, MWH06.C4.Cx2150 SS, MWH06.C4.Cx2090 SS, MWH06.C4.Cx2070 SS, MWH-06-04-UGE-F, MWH06-10530, MWH06-10530 SS |  |  |  | 28d | 76d |  |  |  |  |
| MWH-06-04-MEQ-S |  | Mechanical Equipment Start-up | milestone | 0d | 2021-12-07 | 2021-12-07 | MWH06.C4.Cx2090, MWH06.C4.Cx2160, MWH06.C4.Cx2130, MWH06.C4.Cx2190, MWH06-10530, MWH06-10530 SS |  |  |  | 16d | 64d |  |  |  |  |
| MWH-06-04-EPM-F |  | EPMS SAT Complete | milestone | 0d | 2021-12-10 | 2021-12-10 | MWH06.C4.Cx2070, MWH06.C4.Cx2150, MWH06.C4.Cx2120, MWH06.C4.Cx2180, MWH06-10530 |  |  |  | -18d | 30d |  |  |  |  |
| MWH-06-04-L2CX-F |  | L2 CX Complete (Yellow Tag) | milestone | 0d | 2022-01-03 | 2022-01-03 | MWH06.C4.Cx3010, MWH06.C4.Cx2000, MWH06.C4.Cx2030, MWH06.C4.Cx2010, MWH06.C4.Cx2050, MWH06-10530, MWH06-10530 SS |  |  |  | -32d | 16d |  |  |  |  |
| MWH-06-04-BAS-F |  | BAS SAT Complete | milestone | 0d | 2022-01-04 | 2022-01-04 | MWH06.C4.Cx3020, MWH06-10530 |  |  |  | -16d | 32d |  |  |  |  |
| MWH-06-04-EPMS-F |  | Complete EPMS Testing Complete | milestone | 0d | 2022-02-12 | 2022-02-12 | MWH06.C4.Cx3030 FF |  |  |  | -36d | 12d |  |  |  |  |
| MWH-06-04-LHP-F |  | Landscaping, Hardscaping Complete | milestone | 0d | 2022-02-22 | 2022-02-22 | MWH06-C3.P2300, MWH06-10530 |  |  |  | 52d | 43d |  | 8 | 4 |  |
| MWH-06-04-FIR-F |  | Complete Fire Alarm | milestone | 0d | 2022-02-26 | 2022-02-26 | MWH06.C4.Cx3040, MWH06-10530 |  |  |  | -48d | 0d |  |  |  |  |
| MWH-06-04-L3CX-F |  | L3 CX Complete (Green Tag) | milestone | 0d | 2022-02-28 | 2022-02-28 | MWH06.C4.Cx3050, MWH-06-04-MEQ-S, MWH06-10530 |  |  |  | -48d | 0d |  |  |  | 4 |
| MWH-06-04-RNI-F |  | Complete Ready for Network Install | milestone | 0d | 2022-03-07 | 2022-03-07 | MWH06.C4.Cx4030, MWH06-10530 |  |  |  | -37.9d | 12.1d |  |  |  |  |
| MWH-06-04-IST-F |  | L4 & L5 Complete (White Tag) (Clayco- NIC) | milestone | 0d | 2022-03-21 | 2022-03-21 | MWH06.C4.Cx4000, MWH-06-04-L3CX-F, MWH06-10530 |  |  |  | -51d | 30d | finish on or before 2022-01-19 |  |  |  |
| MWH-06-04-L4CX-F |  | Complete L4 Cx (Blue Tag) (Clayco- NIC) | milestone | 0d | 2022-03-21 | 2022-03-21 | MWH06.C4.Cx4000, MWH06-10530 |  |  |  | -51d | 0.1d | finish on or before 2022-01-19 |  |  |  |
| MWH-06-04-L5CX-F |  | Complete L5/IST (White Tag) (Clayco- NIC) | milestone | 0d | 2022-03-21 | 2022-03-21 | MWH06.C4.Cx4000, MWH06-10530 |  |  |  | -51d | 0.1d | finish on or before 2022-01-19 |  |  |  |
| MWH-06-04-SC-F |  | Complete Substantial Completion | milestone | 0d | 2022-04-02 | 2022-04-02 | MWH06.C4.Cx4020, MWH06-10530 |  |  |  | -51.9d | 0d |  |  |  |  |
| MWH-06-04-SEC-F |  | Security System Complete | milestone | 0d | 2022-04-04 | 2022-04-04 | MWH06.C4.Cx4011, MWH06.C4.Cx4010, MWH06-10530 |  |  |  | 0d |  |  |  |  |  |
| MWH-06-04-SSC-F |  | Complete Security System | milestone | 0d | 2022-04-04 | 2022-04-04 | MWH06.C4.Cx4011, MWH06.C4.Cx4010, MWH06-10530 |  |  |  | 0d |  |  |  |  |  |
| MWH-06-04-BFA-F |  | Complete Beneficial Use - Facilities Operations Centre (FOC) | milestone | 0d | 2022-04-13 | 2022-04-13 | MWH06.C4.Cx4050, MWH06-10530 |  |  |  | 9d |  |  |  |  |  |
| MWH-06-04-BNU-F |  | Complete Beneficial Use | milestone | 0d | 2022-04-13 | 2022-04-13 | MWH06.C4.Cx4050, MWH06-10530 |  |  |  | 9d |  |  |  |  |  |
| MWH-06-04-CO-F |  | Complete Certificate of Occupancy | milestone | 0d | 2022-04-13 | 2022-04-13 | MWH06.C4.Cx4050, MWH06-10530 |  |  |  | 9d |  |  |  |  |  |
| MWH-06-04-FC-F |  | Final Completion | milestone | 0d | 2022-04-13 | 2022-04-13 | MWH06.C4.Cx4050, MWH06-10530 |  |  |  | 9d |  |  |  |  |  |

| ID | WBS | Activity | Type | Duration | Start | Finish | Predecessors | Complete | Planned start | Planned finish | Total float | Free float | Constraint | Calendar | MSP Activity ID | COLO | MSFT-Funding Releases | CELL | HRA - Safety Level |
| --- | --- | --- | --- | --- | --- | --- | --- | --- | --- | --- | --- | --- | --- | --- | --- | --- | --- | --- | --- |
|  | 3 | **Preliminary Milestones** |  |  | 2020-04-06 | 2022-04-23 |  |  |  |  |  |  |  |  |  |  |  |  |  |
|  | 1 | **General** |  |  | 2020-04-06 | 2021-01-08 |  |  |  |  |  |  |  |  |  |  |  |  |  |
| MWH.06.P1010 |  | Mobilize on Site | milestone | 0d | 2020-04-06 A | 2020-04-06 A | MWH-06-04-MOB-S, MWH-06-03-MOB-S, MWH-06-01-MOB-S, MWH-06-01-EW-S, MWH-06-02-EW-S, MWH-06-03-EW-S, MWH-06-04-EW-S, MWH-06-02-MOB-S SS-1d, MWH06.S.1000 SS-1d | 100% | 2020-04-27 | 2020-04-27 |  |  |  |  | 58 | 0 | 1B | CS |  |
| MWH06-P1020 |  | Break Ground | milestone | 0d | 2020-04-22 A | 2020-04-22 A | MWH.06.P1010 | 100% | 2020-04-27 | 2020-04-27 |  |  | start on or after 2020-03-16 |  | 60 | 0 | 1B | CS |  |
| MWH06-2529 |  | Weather Tight | milestone | 0d | 2020-10-13 A | 2020-10-13 A | MWH06.C4.CS1050, MWH06.C4.CS1040 | 100% | 2020-11-02 | 2020-11-02 |  |  |  |  | 61 | 0 |  | CS |  |
| MWH06-P1050 |  | Grant County Permanent Power Required for CX | milestone | 0d | 2021-01-08 A | 2021-01-08 A | MWH06.C1.C1300 | 100% |  |  |  |  | finish on or after 2020-12-31 |  | 56 | 0 | 1C | CS |  |
|  | 2 | **Admin/COLO1** |  |  | 2020-04-22 | 2021-12-02 |  |  |  |  |  |  |  |  |  |  |  |  |  |
| MWH06-C1.P1000 |  | Foundation Start - Admin/COLO 1 | milestone | 0d | 2020-04-22 A | 2020-04-22 A | MWH06-P1020, MWH06-2002 | 100% | 2020-04-27 | 2020-04-27 |  |  |  |  | 65 | 1 | 1B | CS |  |
| MWH06-C1.P1100 |  | Steel Erection - Admin/COLO 1 | milestone | 0d | 2020-06-22 A | 2020-06-22 A | MWH06.S.1010, MWH06.AD.CS1030 SS | 100% | 2020-07-27 | 2020-07-27 |  |  |  |  | 67 | 1 | 1B | CS |  |
| MWH06-C1.P1200 |  | Insulated Metal Panel Start- Admin/COLO 1 | milestone | 0d | 2020-07-07 A | 2020-07-07 A | MWH06.AD.CS1030 SS+12d | 100% | 2020-08-10 | 2020-08-10 |  |  |  |  | 75 | 1 | 1B | CS |  |
| MWH06-C1.P1300 |  | Roof Panel Start -Admin/COLO 1 | milestone | 0d | 2020-07-15 A | 2020-07-15 A | MWH06.AD.CS1040, MWH06.AD.CS1050 SS+2d, MWH06-C1.P1200 | 100% | 2020-08-10 | 2020-08-10 |  |  |  |  | 76 | 1 | 1B | CS |  |
| MWH06-C1.P1400 |  | SOG- ADMIN/ COLO1 Start | milestone | 0d | 2020-08-10 A | 2020-08-10 A | MWH06.AD.CS1080, MWH06.AD.CS1060 | 100% | 2020-08-31 | 2020-08-31 |  |  |  |  | 72 | 1 | 1C | CS |  |
| MWH06-C1.P1600 |  | Ready to Set Exterior MER | milestone | 0d | 2020-10-12 A | 2020-10-12 A | MWH06.C1.C1050 | 100% | 2020-11-02 | 2020-11-02 |  |  |  |  | 93 | 1 | 1C | CS |  |
| MWH06-C1.P1700 |  | Ready to Set Exterior Mechanical Equipment | milestone | 0d | 2020-10-14 A | 2020-10-14 A | MWH06.C1.C1060 | 100% | 2020-11-02 | 2020-11-02 |  |  |  |  | 95 | 1 | 1C | CS |  |
| MWH06-C1.P1500 |  | Fit out Start - Admin/COLO 1 | milestone | 0d | 2020-10-19 A | 2020-10-19 A | MWH06.AD.CS1100 | 100% | 2020-11-02 | 2020-11-02 |  |  |  |  | 70 | 1 | 1C | CS |  |
| MWH06-C1.P1800 |  | Cx - Level 2 Start COLO 1 | milestone | 0d | 2021-05-07 A | 2021-05-07 A | MWH06.C1.C1040, MWH06-P1050, MWH06.C1.C1130, MWH06.C1.C1420, MWH06.C1.C1460, MWH06.C1.C1400, MWH06.C1.C1330, MWH06.C1.C1320, MWH06.C1.C1340, MWH06.C1.C1290, MWH06.C1.C3340, MWH06.C1.C1320 SS, MWH06.C1.C2260, MWH06.C1.C4320, MWH06-2529, MWH06-10530 | 100% | 2021-06-01 | 2021-06-01 |  |  |  |  | 79 | 1 | 1C | CS |  |
| MWH06-C1.P2000 |  | Construction Server- COLO-1 | milestone | 0d | 2021-05-07 A | 2021-05-07 A | MWH06.C1.Cx2170, MWH06.C1.Cx2110, MWH06.C1.Cx2180, MWH06.C1.Cx2080, MWH06-10036, MWH06-10530 | 100% | 2021-07-28 | 2021-07-28 |  |  |  |  | 108 | 1 |  | CS | 1 |
| MWH06-C1.P1900 |  | Admin / COLO 1 CSA complete | milestone | 0d | 2021-07-13 A | 2021-07-13 A | MWH06AD-1029, MWH06AD-1026, MWH06.C1.C4420, MWH06.C1.C1450, MWH06.C1.C1350, MWH06.C1.C2330, MWH06.C1.C1450 SS, MWH06.C1.C3400, MWH06.C1.C2400, MWH06.C1.C4390, MWH06AD-1022, MWH06-10530 | 100% | 2021-09-03 | 2021-09-03 |  |  |  |  | 97 | 1 | 1C | CS |  |
| MWH06-C1.P2100 |  | Ready for Network Install | milestone | 0d | 2021-10-29 | 2021-10-29 | MWH06.C1.Cx4000, MWH06.C1.Cx4030, MWH06-10530 |  |  |  | -33.9d | 0.1d |  |  | 113 | 1 |  | CS | 1 |
| MWH06-C1.P2300 |  | TCO Admin/COLO 1 | milestone | 0d | 2021-11-12 | 2021-11-12 | MWH-06-01-SC-F, MWH06.C1.Cx4020, MWH06-10530 |  |  |  | -37d | 0d |  | 7-8s wo/Holidays Clayco | 45 | 1 |  | CS |  |
| MWH06-C1.P2200 |  | IST Admin/COLO 1 | milestone | 0d | 2021-11-13 | 2021-11-13 | MWH-06-01-SSC-F, MWH06.C1.Cx4000, MWH-06-01-SEC-F, MWH06-10530 |  |  |  | 142d | 0d |  | 7-8s wo/Holidays Clayco | 45 | 1 |  | CS |  |
| MWH06-C1.P2500 |  | Lock down Admin/COLO 1 | milestone | 0d | 2021-11-22 | 2021-11-22 | MWH06.C1.Cx4050, MWH-06-01-LHP-F, MWH06-C1.P1900, MWH06-10530 |  |  |  | 152d |  |  | 7-8s wo/Holidays Clayco | 45 | 1 |  | CS |  |
| MWH06-C1.P2400 |  | Substantial Completion Admin/COLO 1 | milestone | 0d | 2021-12-02 | 2021-12-02 | MWH-06-01-CSA-F, MWH06-C1.P2200 FS+19d, MWH-06-01-IST-F, MWH-06-01-FLS-F, MWH-06-01-INT-F, MWH06-10530 |  |  |  | 142d |  |  | 7-8s wo/Holidays Clayco | 45 | 1 |  | CS |  |
|  | 3 | **COLO 2** |  |  | 2020-05-04 | 2022-02-03 |  |  |  |  |  |  |  |  |  |  |  |  |  |
| MWH06-C2.P1000 |  | Foundation Start - COLO 2 | milestone | 0d | 2020-05-04 A | 2020-05-04 A | MWH06-10439, MWH06.C1.CS1000, MWH06.C1.CS1020 | 100% | 2020-06-12 | 2020-06-12 |  |  |  |  | 115 | 2 |  | CS |  |
| MWH06-C2.P1100 |  | Steel Erection - COLO 2 | milestone | 0d | 2020-07-07 A | 2020-07-07 A | MWH06.C1.CS1030 | 100% | 2020-08-10 | 2020-08-10 |  |  |  |  | 118 | 2 |  | CS |  |
| MWH06-C2.P1200 |  | Insulated Metal Panel Start- COLO 2 | milestone | 0d | 2020-07-20 A | 2020-07-20 A | MWH06.C1.CS1050 | 100% | 2020-08-10 | 2020-08-10 |  |  |  |  | 126 | 2 |  | CS |  |
| MWH06-C2.P1300 |  | Roof Panel Start -COLO 2 | milestone | 0d | 2020-07-27 A | 2020-07-27 A | MWH06.C1.CS1070 | 100% | 2020-08-18 | 2020-08-18 |  |  |  |  | 128 | 2 |  | CS |  |
| MWH06-C2.P1500 |  | Fit out Start - COLO 2 | milestone | 0d | 2020-10-20 A | 2020-10-20 A | MWH06.C2.CS1090 | 100% | 2020-11-02 | 2020-11-02 |  |  |  |  | 120 | 2 |  | CS |  |
| MWH06-C2.P1400 |  | SOG- COLO 2 Start | milestone | 0d | 2020-10-28 A | 2020-10-28 A | MWH06.C2.CS1070, MWH06.C2.CS1050, MWH06.C2.CS1020 | 100% | 2020-11-02 | 2020-11-02 |  |  |  |  | 122 | 2 |  | CS |  |
| MWH06-C2.P1600 |  | Ready to Set MER | milestone | 0d | 2020-11-03 A | 2020-11-03 A | MWH06.C2.C2030 | 100% | 2020-11-30 | 2020-11-30 |  |  |  |  | 150 | 2 |  | CS |  |
| MWH06-C2.P1700 |  | Ready to Set Exterior Mechanical Equipment | milestone | 0d | 2020-11-13 A | 2020-11-13 A | MWH06.C2.C2090 | 100% | 2020-11-30 | 2020-11-30 |  |  |  |  | 152 | 2 |  | CS |  |
| MWH06-C2.P1800 |  | COLO 2 CSA complete | milestone | 0d | 2021-07-19 A | 2021-07-19 A | MWH06.C2.C4360, MWH06.C2.C3400, MWH06.C2.C3410, MWH06.C2.C1420, MWH06.C2.C3420, MWH06.C2.C2400, MWH06.C2.C1360, MWH06.C2.C2360, MWH06.C2.C4340, MWH06.C2.C1370, MWH06.C2.C2310, MWH06.C2.C4350, MWH06-10530 | 100% | 2021-08-31 | 2021-08-31 |  |  |  |  | 11 | 2 | 1C | CS |  |
| MWH06-C2.P1900 |  | Cx - Level 2 Start COLO 2 | milestone | 0d | 2021-08-21 A | 2021-08-21 A | MWH06.C2.Cx2030, MWH06.C2.Cx2000, MWH06.C2.Cx2050, MWH06.C2.Cx2010, MWH06.C2.C1450, MWH06.C2.C3440, MWH06.C2.C2230, MWH06.C2.C2430, MWH06.C2.C4100, MWH06.C2.C4400, MWH06.C2.C1220, MWH06.C2.C1320, MWH06.C2.C2210, MWH06.C2.C3200, MWH06.C2.C3300, MWH06.C2.C4160, MWH06.C2.C4260, MWH06.C2.C1240, MWH06.C2.C1400, MWH06.C2.C2240, MWH06.C2.C2390, MWH06.C2.C4200, MWH06.C2.C4330, MWH06-10530, MWH06-10530 SS | 100% | 2021-09-02 | 2021-09-02 |  |  |  |  | 30 | 2 |  | CS |  |
| MWH06-C2.P2000 |  | Construction Server- COLO-2 | milestone | 0d | 2021-10-06 | 2021-10-06 | MWH06.C2.Cx2180, MWH06.C2.Cx2120, MWH06.C2.Cx2190, MWH06.C2.Cx2130, MWH06-10530 |  |  |  | -36d | 0d |  |  | 167 | 2 |  | CS | 1 |
| MWH06-C2.P2100 |  | Ready for Network Install | milestone | 0d | 2021-12-27 | 2021-12-27 | MWH06.C2.Cx4010, MWH06.C2.Cx4030, MWH06-10530 |  |  |  | -47.9d | 0.1d |  |  | 172 | 2 |  | CS | 1 |
| MWH06-C2.P2300. |  | TCO COLO 2 | milestone | 0d | 2022-01-10 | 2022-01-10 | MWH-06-02-SC-F, MWH06.C2.Cx4020, MWH06-10530 |  |  |  | -53d | 0d |  | 7-8s wo/Holidays Clayco | 45 | 2 |  | CS |  |
| MWH06-C2.P2200 |  | IST COLO 2 | milestone | 0d | 2022-01-15 | 2022-01-15 | MWH-06-02-SSC-F, MWH06.C2.Cx4010, MWH-06-02-SEC-F, MWH06-10530 |  |  |  | 79d | 0d |  | 7-8s wo/Holidays Clayco | 47 | 2 |  | CS |  |
| MWH06-C2.P2500 |  | Lock down COLO 2 | milestone | 0d | 2022-01-21 | 2022-01-21 | MWH06.C2.Cx4050, MWH-06-02-LHP-F, MWH06-10530 |  |  |  | 92d |  |  | 7-8s wo/Holidays Clayco | 45 | 2 |  | CS |  |
| MWH06-C2.P2400 |  | Substantial Completion COLO 2 | milestone | 0d | 2022-02-03 | 2022-02-03 | MWH06-C2.P2200 FS+19d, MWH-06-02-IST-F, MWH-06-02-FLS-F, MWH-06-02-INT-F, MWH06-10530 |  |  |  | 79d |  |  | 7-8s wo/Holidays Clayco | 45 | 2 |  | CS |  |

| ID | WBS | Activity | Type | Duration | Start | Finish | Predecessors | Complete | Planned start | Planned finish | Total float | Free float | Calendar | MSP Activity ID | COLO | CELL | MSFT-Funding Releases | HRA - Safety Level |
| --- | --- | --- | --- | --- | --- | --- | --- | --- | --- | --- | --- | --- | --- | --- | --- | --- | --- | --- |
|  | 4 | **COLO 3** |  |  | 2020-05-29 | 2022-03-14 |  |  |  |  |  |  |  |  |  |  |  |  |
| MWH06-C3.P1000 |  | Foundation Start - COLO 3 | milestone | 0d | 2020-05-29 A | 2020-05-29 A | MWH06.C2.CS1000 | 100% | 2020-06-22 | 2020-06-22 |  |  |  | 175 | 3 | CS |  |  |
| MWH06-C3.P1100 |  | Steel Erection -COLO 3 | milestone | 0d | 2020-07-23 A | 2020-07-23 A | MWH06.C2.CS1020 | 100% | 2020-08-10 | 2020-08-10 |  |  |  | 177 | 3 | CS |  |  |
| MWH06-C3.P1200 |  | Insulated Metal Panel Start- COLO 3 | milestone | 0d | 2020-08-15 A | 2020-08-15 A | MWH06.C2.CS1040, MWH06.C2.CS1040 SS, MWH06.C1.CS1060, MWH06.C2.CS1030 | 100% | 2020-08-31 | 2020-08-31 |  |  |  | 182 | 3 | CS |  |  |
| MWH06-C3.P1300 |  | Roof Panel Start -COLO 3 | milestone | 0d | 2020-08-18 A | 2020-08-18 A | MWH06.C2.CS1050 | 100% | 2020-08-31 | 2020-08-31 |  |  |  | 186 | 3 | CS |  |  |
| MWH06-C3.P1400 |  | SOG- COLO 3 Start | milestone | 0d | 2020-10-05 A | 2020-10-05 A | MWH06.C3.CS1070 | 100% | 2020-11-02 | 2020-11-02 |  |  |  | 180 | 3 | CS |  |  |
| MWH06-C3.P1500 |  | Fit out Start - COLO 3 | milestone | 0d | 2020-10-26 A | 2020-10-26 A | MWH06.C3.CS1090 | 100% | 2020-11-02 | 2020-11-02 |  |  |  | 178 | 3 | CS |  |  |
| MWH06-C3.P1600 |  | Ready to Set Exterior MER | milestone | 0d | 2020-11-30 A | 2020-11-30 A | MWH06.C3.C1050 | 100% | 2021-01-02 | 2021-01-02 |  |  |  | 197 | 3 | CS |  |  |
| MWH06-C3.P1700 |  | Ready to Set Exterior Mechanical Equipment | milestone | 0d | 2020-12-02 A | 2020-12-02 A | MWH06.C3.C1060 | 100% | 2021-01-02 | 2021-01-02 |  |  |  | 199 | 3 | CS |  |  |
| MWH06-C3.P1900 |  | COLO 3 CSA complete | milestone | 0d | 2021-08-13 A | 2021-08-13 A | MWH06.C3.C3240, MWH06.C3.C4260, MWH06.C3.C1250, MWH06.C3.C3160, MWH06.C3.C2200, MWH06.C3.C4200, MWH06.C3.C3290, MWH06.C3.C2410, MWH06.C3.C2230, MWH06.C3.C4250, MWH06.C3.C3410, MWH06.C3.C2450, MWH06.C3.C4450, MWH06.C4.C1260, MWH06.C4.C3220, MWH06.C3.C1450, MWH06.C3.C3410 SS, MWH06.C3.C2450 SS, MWH06.C3.C4450 SS, MWH06.C3.C1300, MWH06.C3.C3220, MWH06.C3.C1290, MWH06.C3.C3210, MWH06.C3.C2220, MWH06.C3.C4240, MWH06-10530 | 100% | 2021-08-31 | 2021-08-31 |  |  |  | 29 | 3 | CS | 1C |  |
| MWH06-C3.P1800 |  | Cx - Level 2 Start COLO 3 | milestone | 0d | 2021-08-31 | 2021-08-31 | MWH06.C3.Cx2000 SS, MWH06.C3.C1150, MWH06.C3.C1340, MWH06.C3.C1260, MWH06.C3.C2270, MWH06-10530, MWH06-10530 SS |  |  |  | -31d | 0d |  | 187 | 3 | CS |  |  |
| MWH06-C3.P2000 |  | Construction Server- COLO-3 | milestone | 0d | 2021-10-30 | 2021-10-30 | MWH06.C3.Cx2190, MWH06.C3.Cx2130, MWH06.C3.Cx2180, MWH06.C3.Cx2110, MWH06-10530 |  |  |  | -22d | 0d |  | 224 | 3 | CS |  | 1 |
| MWH06-C3.P2100 |  | Ready for Network Install | milestone | 0d | 2022-02-08 | 2022-02-08 | MWH06.C3.Cx4000, MWH06.C3.Cx4030, MWH06-10530 |  |  |  | -45.9d | 0.1d |  | 229 | 3 | CS |  | 1 |
| MWH06-C3.P2300 |  | TCO COLO 3 | milestone | 0d | 2022-02-22 | 2022-02-22 | MWH-06-03-SC-F, MWH06.C3.Cx4020, MWH06-10530 |  |  |  | -62d | 0d | 7-8s wo/Holidays Clayco | 45 | 4 | CS |  |  |
| MWH06-C3.P2200 |  | IST COLO 3 | milestone | 0d | 2022-02-23 | 2022-02-23 | MWH-06-03-SSC-F, MWH06.C3.Cx4000, MWH-06-03-SEC-F, MWH06-10530 |  |  |  | 40d | 0d | 7-8s wo/Holidays Clayco | 43 | 3 | CS |  |  |
| MWH06-C3.P2500 |  | Lock down COLO 3 | milestone | 0d | 2022-03-06 | 2022-03-06 | MWH06.C3.Cx4050, MWH-06-03-LHP-F, MWH06-10530 |  |  |  | 48d |  | 7-8s wo/Holidays Clayco | 45 | 4 | CS |  |  |
| MWH06-C3.P2400 |  | Substantial Completion COLO 3 | milestone | 0d | 2022-03-14 | 2022-03-14 | MWH-06-03-CSA-F, MWH06-C3.P2200 FS+19d, MWH-06-03-IST-F, MWH-06-03-FLS-F, MWH-06-03-INT-F, MWH06-10530 |  |  |  | 40d |  | 7-8s wo/Holidays Clayco | 45 | 4 | CS |  |  |
|  | 5 | **COLO 4** |  |  | 2020-07-18 | 2022-04-23 |  |  |  |  |  |  |  |  |  |  |  |  |
| MWH06-C4.P1000 |  | Foundation Start - COLO 4 | milestone | 0d | 2020-07-18 A | 2020-07-18 A | MWH06.C3.CS1010 | 100% | 2020-08-29 | 2020-08-29 |  |  |  | 232 | 4 | CS |  |  |
| MWH06-C4.P1100 |  | Steel Erection - COLO 4 | milestone | 0d | 2020-08-08 A | 2020-08-08 A | MWH06.C3.CS1020 | 100% | 2020-08-31 | 2020-08-31 |  |  |  | 234 | 4 | CS |  |  |
| MWH06-C4.P1200 |  | Insulated Metal Panel Start- COLO 4 | milestone | 0d | 2020-08-22 A | 2020-08-22 A | MWH06.C3.CS1040, MWH06.C3.CS1040 SS, MWH06-C3.P1200, MWH06.C2.CS1040 SS, MWH06.C1.CS1060, MWH06.C2.CS1030, MWH06.C2.CS1040, MWH06.C3.CS1030 | 100% | 2020-08-31 | 2020-08-31 |  |  |  | 240 | 4 | CS |  |  |
| MWH06-C4.P1300 |  | Roof Panel Start - COLO 4 | milestone | 0d | 2020-08-28 A | 2020-08-28 A | MWH06.C3.CS1050 | 100% | 2020-11-02 | 2020-11-02 |  |  |  | 243 | 4 | CS |  |  |
| MWH06-C4.P1400 |  | SOG- COLO 4 Start | milestone | 0d | 2020-10-16 A | 2020-10-16 A | MWH06.C4.CS1070 | 100% | 2020-11-02 | 2020-11-02 |  |  |  | 238 | 4 | CS |  |  |
| MWH06-C4.P1500 |  | Fit out Start - COLO 4 | milestone | 0d | 2020-11-05 A | 2020-11-05 A | MWH06.C4.CS1090 | 100% | 2020-11-30 | 2020-11-30 |  |  |  | 236 | 4 | CS |  |  |
| MWH06-C4.P1600 |  | Ready to Set Exterior MER | milestone | 0d | 2020-12-10 A | 2020-12-10 A | MWH06.C4.C1060 | 100% | 2021-01-02 | 2021-01-02 |  |  |  | 253 | 4 | CS |  |  |
| MWH06-C4.P1700 |  | Ready to Set Exterior Mechanical Equipment | milestone | 0d | 2020-12-10 A | 2020-12-10 A | MWH06.C4.C1070 | 100% | 2021-01-02 | 2021-01-02 |  |  |  | 255 | 4 | CS |  |  |
| MWH06-C4.P1900 |  | COLO 4 CSA complete | milestone | 0d | 2021-10-07 | 2021-10-07 | MWH06.C4.C3220, MWH06.C4.C1260, MWH06.C4.C2250, MWH06.C4.C1200, MWH06.C4.C1300, MWH06.C4.C1240, MWH06.C4.C1250, MWH06.C4.C3280, MWH06.C4.C3290, MWH06.C4.C3300, MWH06.C4.C2370, MWH06.C4.C2230, MWH06.C4.C2240, MWH06.C4.C4380, MWH06.C4.C4270, MWH06.C4.C4330, MWH06.C4.C3450, MWH06.C4.C2450, MWH06.C4.C4450, MWH06.C4.C1450, MWH06.C4.C3450 SS, MWH06.D4.C4.C4030 FF, MWH06-10530 |  |  |  | 62d | 110d |  | 37 | 4 | CS | 1C |  |
| MWH06-C4.P1800 |  | Cx - Level 2 Start COLO 4 | milestone | 0d | 2021-10-13 | 2021-10-13 | MWH06.C4.Cx2000 SS, MWH06.C4.C1090, MWH06.C4.C1210, MWH06.C4.C1330, MWH06.C4.C1430, MWH06-10530, MWH06-10530 SS |  |  |  | -32d | 0d |  | 245 | 4 | CS |  |  |
| MWH06-C4.P2000 |  | Construction Server- COLO-4 | milestone | 0d | 2021-12-06 | 2021-12-06 | MWH06.C4.Cx2090, MWH06.C4.Cx2160, MWH06.C4.Cx2130, MWH06.C4.Cx2190, MWH06-10530 |  |  |  | -16d | 0d |  | 277 | 4 | CS |  | 1 |
| MWH06-C4.P2100 |  | Ready for Network Install | milestone | 0d | 2022-03-21 | 2022-03-21 | MWH06.C4.Cx4000, MWH06.C4.Cx4030, MWH06-10530 |  |  |  | -49.9d | 0.1d |  | 282 | 4 | CS |  | 1 |
| MWH06-C4.P2300 |  | TCO COLO 4 | milestone | 0d | 2022-04-02 | 2022-04-02 | MWH-06-04-SC-F, MWH06.C4.Cx4020, MWH06-10530 |  |  |  | 21d |  | 7-8s wo/Holidays Clayco | 45 | 4 | CS |  |  |
| MWH06-C4.P2200 |  | IST COLO 4 | milestone | 0d | 2022-04-04 | 2022-04-04 | MWH-06-04-SSC-F, MWH06.C4.Cx4000, MWH-06-04-SEC-F, MWH06-10530 |  |  |  | 0d |  | 7-8s wo/Holidays Clayco | 48 | 4 | CS |  |  |
| MWH06-C4.P2500 |  | Lock down COLO 4 | milestone | 0d | 2022-04-13 | 2022-04-13 | MWH06.C4.Cx4050, MWH-06-04-LHP-F, MWH06-10530 |  |  |  | 10d |  | 7-8s wo/Holidays Clayco | 45 | 4 | CS |  |  |
| MWH06-C4.P2400 |  | Substantial Completion COLO 4 | milestone | 0d | 2022-04-23 | 2022-04-23 | MWH-06-04-CSA-F, MWH06-C4.P2200 FS+19d, MWH-06-03-IST-F, MWH-06-04-IST-F, MWH-06-04-FLS-F, MWH-06-04-INT-F, MWH06-10530 |  |  |  | 0d |  | 7-8s wo/Holidays Clayco | 45 | 4 | CS |  |  |

| ID | WBS | Activity | Type | Duration | Start | Finish | Predecessors | Complete | Planned start | Planned finish | Constraint | Calendar | MSP Activity ID | COLO | MSFT-Funding Releases | CELL | Critical Path | STEEL ERECTION CRITICAL | HOT ITEMS | Critical Path-2 | Critical Path-1 | CRITICAL PATH-3 | MER | WBS | COLO CRITICAL |
| --- | --- | --- | --- | --- | --- | --- | --- | --- | --- | --- | --- | --- | --- | --- | --- | --- | --- | --- | --- | --- | --- | --- | --- | --- | --- |
|  | 4 | **Preconstruction** |  |  | 2020-02-24 | 2021-05-10 |  |  |  |  |  |  |  |  |  |  |  |  |  |  |  |  |  |  |  |
|  | 9 | **Contracting Funding** |  |  | 2020-02-24 | 2020-07-20 |  |  |  |  |  |  |  |  |  |  |  |  |  |  |  |  |  |  |  |
|  | 2 | **Funding Release Packages** |  |  | 2020-02-24 | 2020-07-20 |  |  |  |  |  |  |  |  |  |  |  |  |  |  |  |  |  |  |  |
| A1170 |  | Phase 1A - Funding Release | milestone | 0d | 2020-02-24 A | 2020-02-24 A | MWH.06.M1000 | 100% |  |  | start on or after 2020-02-24 |  | 287 | 0 | 1A | CS |  |  |  |  |  |  |  |  |  |
| MWH06-2001 |  | PEMB Release | milestone | 0d | 2020-02-24 A | 2020-02-24 A | A1170 | 100% |  |  | start on or after 2020-02-24 |  | 288 | 0 | 1A | CS |  |  |  |  |  |  |  |  |  |
| MWH06-2002 |  | Phase 1B - Funding Release | milestone | 0d | 2020-03-30 A | 2020-03-30 A | A1170, A1170 SS | 100% |  |  | start on or after 2020-03-30 |  | 66 | 0 | 1B | CS | 4 | 2 |  |  |  |  |  |  |  |
| MWH06-2029 |  | Schneider Electric ROJ Received from MSFT | milestone | 0d | 2020-04-13 A | 2020-04-13 A | MWH.06.M1000 | 100% | 2020-04-27 | 2020-04-27 | start on or after 2020-04-13 |  | 290 | 0 |  | CS |  |  |  |  |  |  |  |  |  |
| MWH06-2140.1 |  | MSFT Issue DRB #1 for Review |  | 5d | 2020-05-19 A | 2020-07-20 A | MWH06-2002 | 100% | 2020-05-26 | 2020-06-01 |  |  | 293 | 0 |  | CS |  |  | 1 | 1 |  |  |  |  |  |
| MWH06-2111 |  | Phase 1C1- MSFT Commitment for steel crew | milestone | 0d | 2020-06-11 A | 2020-06-11 A | MWH06-2002 | 100% | 2020-06-29 | 2020-06-29 | finish on 2020-06-04 |  | 291 | 0 | 1C | CS |  | 1 |  |  | 1 |  |  |  |  |
| MWH06-2003 |  | Phase 1C - Funding Release | milestone | 0d | 2020-06-30 A | 2020-06-30 A | MWH06-2002 | 100% | 2020-08-10 | 2020-08-10 | start on or after 2020-06-30 | 7-8s wo/Holidays Clayco | 289 | 0 | 1C | CS |  |  |  |  |  |  |  |  |  |
| MWH06-2140.2 |  | CO- DRB# 1 - Approved | milestone | 0d | 2020-07-20 A | 2020-07-20 A | MWH06-2140.1 | 100% | 2020-08-29 | 2020-08-29 |  |  | 292 | 0 |  | CS |  |  | 1 | 1 |  |  |  |  |  |
|  | 13 | **Core & Shell Procurement** |  |  | 2020-02-24 | 2020-09-12 |  |  |  |  |  |  |  |  |  |  |  |  |  |  |  |  |  |  |  |
| MWH06-1383 |  | Lead Time for PEMB |  | 121d | 2020-02-24 A | 2020-06-18 A | A1170, MWH06-2001 | 100% | 2020-02-19 | 2020-06-18 |  | 7-8s w/Holidays Clayco | 295 | 0 | 1A | CS | 2 | 1 |  |  |  | CP-2 |  |  |  |
| MWH06-1977 |  | Lead Time for Rebar (Footings & Walls) |  | 35d | 2020-03-30 A | 2020-04-21 A | A1170, MWH06-2002 | 100% | 2020-04-27 | 2020-05-31 |  | 7-8s w/Holidays Clayco | 296 | 0 | 1B | CS | 3 | 3 |  |  |  |  |  |  |  |
| MWH06-2011 |  | Lead Time for Wall & Roof Metal Panels |  | 56d | 2020-04-07 A | 2020-06-29 A | MWH06-2002 FS+7d | 100% | 2020-04-27 | 2020-06-21 |  | 7-8s w/Holidays Clayco | 298 | 0 | 1B | CS |  |  |  |  |  |  |  |  |  |
| MWH06-2013 |  | Lead Time for HM Ext. frames |  | 56d | 2020-04-07 A | 2020-07-10 A | MWH06-2002 FS+7d | 100% | 2020-04-27 | 2020-06-21 |  | 7-8s w/Holidays Clayco | 300 | 0 | 1B | CS |  |  |  |  |  |  |  |  |  |
| MWH06-2010 |  | Lead Time for COLO 1 Structural Interior Steel |  | 83d | 2020-06-30 A | 2020-09-12 A | MWH06-2003 | 100% | 2020-08-10 | 2020-10-31 |  | 7-8s w/Holidays Clayco | 297 | 0 | 1C | CS |  |  |  |  |  |  |  |  |  |
| MWH06-2012 |  | Lead Time for Admin/COLO 1 Yard Steel |  | 49d | 2020-06-30 A | 2020-08-18 A | MWH06-2003 | 100% | 2020-08-31 | 2020-10-18 |  | 7-8s w/Holidays Clayco | 299 | 0 | 1C | CS |  |  |  |  |  |  |  |  |  |
| MWH06-2101 |  | Lead time for Drywall/Framing |  | 27d | 2020-08-10 A | 2020-09-12 A | MWH06-2003 | 100% | 2020-08-10 | 2020-09-05 |  | 7-8s wo/Holidays Clayco | 301 | 0 |  | CS |  |  |  |  |  |  |  |  |  |
|  | 10 | **OFCI Equipment** |  |  | 2020-06-27 | 2021-05-10 |  |  |  |  |  |  |  |  |  |  |  |  |  |  |  |  |  |  |  |
|  | 2 | **Contractor E ROJ** |  |  | 2020-06-27 | 2021-04-29 |  |  |  |  |  |  |  |  |  |  |  |  |  |  |  |  |  |  |  |
|  | 1 | **MER** |  |  | 2020-10-09 | 2020-12-16 |  |  |  |  |  |  |  |  |  |  |  |  |  |  |  |  |  |  |  |
|  | 1 | **COLO-1** |  |  | 2020-10-09 | 2020-10-19 |  |  |  |  |  |  |  |  |  |  |  |  |  |  |  |  |  |  |  |
| MWH06.C1.E1220 |  | Pad Ready for MER COLO-1 Cell-3 | milestone | 0d | 2020-10-09 A | 2020-10-09 A | MWH06.C1.C3050 FS+5d | 100% | 2020-11-02 | 2020-11-02 |  |  | 307 | 1 |  | 3 |  |  |  |  |  |  | 2 | 3 |  |
| MWH06.C1.E1140 |  | Pad Ready for MER COLO-1 Cell-1 | milestone | 0d | 2020-10-10 A | 2020-10-10 A | MWH06.C1.C1050 FS+5d | 100% | 2020-11-02 | 2020-11-02 |  |  | 306 | 1 |  | 1 |  |  |  |  |  |  | 2 | 3 |  |
| MWH06.C1.E1150 |  | Pad Ready for MER COLO-1 Cell-2 | milestone | 0d | 2020-10-19 A | 2020-10-19 A | MWH06.C1.C2050 FS+5d | 100% | 2020-11-02 | 2020-11-02 |  |  | 309 | 1 |  | 2 |  |  |  |  |  |  | 2 | 3 | 1 |
| MWH06.C1.E1230 |  | Pad Ready for MER COLO-1 Cell-4 | milestone | 0d | 2020-10-19 A | 2020-10-19 A | MWH06.C1.C4050 FS+5d | 100% | 2020-11-02 | 2020-11-02 |  |  | 311 | 1 |  | 4 |  |  |  |  |  |  | 2 | 3 | 1 |

| ID | WBS | Activity | Type | Duration | Start | Finish | Predecessors | Complete | Planned start | Planned finish | Calendar | MSP Activity ID | COLO | MER | CELL | WBS | TRADE | MSFT-Funding Releases |
| --- | --- | --- | --- | --- | --- | --- | --- | --- | --- | --- | --- | --- | --- | --- | --- | --- | --- | --- |
|  | 2 | **COLO-2** |  |  | 2020-11-03 | 2020-11-19 |  |  |  |  |  |  |  |  |  |  |  |  |
| MWH06.C2.E1130 |  | Pad Ready for MER COLO-2 Cell-2 | milestone | 0d | 2020-11-03 A | 2020-11-03 A | MWH06.C2.C2030 FS+5d | 100% | 2020-11-30 | 2020-11-30 |  | 317 | 2 | 2 | 2 | 3 |  |  |
| MWH06.C2.E1200 |  | Pad Ready for MER COLO-2 Cell-4 | milestone | 0d | 2020-11-05 A | 2020-11-05 A | MWH06.C2.C4040 FS+4d | 100% | 2020-11-30 | 2020-11-30 | 7-8s wo/Holidays Clayco | 319 | 2 | 2 | 4 | 3 |  |  |
| MWH06.C2.E1120 |  | Pad Ready for MER COLO-2 Cell-1 | milestone | 0d | 2020-11-17 A | 2020-11-17 A | MWH06.C2.C1040 FS+5d | 100% | 2020-11-30 | 2020-11-30 |  | 314 | 2 | 2 | 1 | 3 |  |  |
| MWH06.C2.E1210 |  | Pad Ready for MER COLO-2 Cell-3 | milestone | 0d | 2020-11-19 A | 2020-11-19 A | MWH06.C2.C3050 FS+5d | 100% | 2020-11-30 | 2020-11-30 |  | 315 | 2 | 2 | 3 | 3 |  |  |
|  | 3 | **COLO-3** |  |  | 2020-11-30 | 2020-12-11 |  |  |  |  |  |  |  |  |  |  |  |  |
| MWH06.C3.E1120 |  | Pad Ready for MER COLO-3 Cell-1 | milestone | 0d | 2020-11-30 A | 2020-11-30 A | MWH06.C3.C1050 FS+5d | 100% | 2021-01-02 | 2021-01-02 |  | 322 | 3 | 2 | 1 | 3 |  |  |
| MWH06.C3.E1260 |  | Pad Ready for MER COLO-3 Cell-3 | milestone | 0d | 2020-12-04 A | 2020-12-04 A | MWH06.C3.C3050 FS+5d | 100% | 2021-01-02 | 2021-01-02 |  | 323 | 3 | 2 | 3 | 3 |  |  |
| MWH06.C3.E1130 |  | Pad Ready for MER COLO-3 Cell-2 | milestone | 0d | 2020-12-11 A | 2020-12-11 A | MWH06.C3.C2050 FS+5d | 100% | 2021-01-02 | 2021-01-02 |  | 325 | 3 | 2 | 2 | 3 |  |  |
| MWH06.C3.E1270 |  | Pad Ready for MER COLO-3 Cell-4 | milestone | 0d | 2020-12-11 A | 2020-12-11 A | MWH06.C3.C4050 FS+5d | 100% | 2021-01-02 | 2021-01-02 |  | 327 | 3 | 2 | 4 | 3 |  |  |
|  | 4 | **COLO-4** |  |  | 2020-12-10 | 2020-12-16 |  |  |  |  |  |  |  |  |  |  |  |  |
| MWH06.C4.E1120 |  | Pad Ready for MER COLO-4 Cell-1 | milestone | 0d | 2020-12-10 A | 2020-12-10 A | MWH06.C4.C1060 FS+5d | 100% | 2021-01-02 | 2021-01-02 |  | 330 | 4 | 2 | 1 | 3 |  |  |
| MWH06.C4.E1220 |  | Pad Ready for MER COLO-4 Cell-3 | milestone | 0d | 2020-12-10 A | 2020-12-10 A | MWH06.C4.C3060 FS+4d | 100% | 2021-01-02 | 2021-01-02 |  | 331 | 4 | 2 | 3 | 3 |  |  |
| MWH06.C4.E1130 |  | Pad Ready for MER COLO-4 Cell-2 | milestone | 0d | 2020-12-16 A | 2020-12-16 A | MWH06.C4.C2060 FS+5d | 100% | 2021-01-02 | 2021-01-02 |  | 333 | 4 | 2 | 2 | 3 |  |  |
| MWH06.C4.E1230 |  | Pad Ready for MER COLO-4 Cell-4 | milestone | 0d | 2020-12-16 A | 2020-12-16 A | MWH06.C4.C4060 FS+5d | 100% | 2021-01-02 | 2021-01-02 |  | 335 | 4 | 2 | 4 | 3 |  |  |
|  | 5 | **AHU** |  |  | 2020-10-26 | 2021-03-10 |  |  |  |  |  |  |  |  |  |  |  |  |
|  | 1 | **COLO-1** |  |  | 2020-10-26 | 2020-10-26 |  |  |  |  |  |  |  |  |  |  |  |  |
| MWH06.C1.E1280 |  | AHU - ROJ COLO-1 Cell- 1 | milestone | 0d | 2020-10-26 A | 2020-10-26 A | MWH06.C1.C1170 | 100% | 2020-11-02 | 2020-11-02 |  | 339 | 1 |  | 1 | 4 | 51 | 1C |
| MWH06.C1.E1290 |  | AHU - ROJ COLO-1 Cell- 2 | milestone | 0d | 2020-10-26 A | 2020-10-26 A | MWH06.C1.C2160 | 100% | 2020-11-02 | 2020-11-02 |  | 343 | 1 |  | 2 | 4 | 51 | 1C |
| MWH06.C1.E1390 |  | AHU - ROJ COLO-1 Cell- 3 | milestone | 0d | 2020-10-26 A | 2020-10-26 A | MWH06.C1.C3200 | 100% | 2020-11-02 | 2020-11-02 |  | 341 | 1 |  | 3 | 4 | 51 | 1C |
| MWH06.C1.E1400 |  | AHU - ROJ COLO-1 Cell- 4 | milestone | 0d | 2020-10-26 A | 2020-10-26 A | MWH06.C1.C4190 | 100% | 2020-11-02 | 2020-11-02 |  | 345 | 1 |  | 4 | 4 | 51 | 1C |
|  | 2 | **COLO-2** |  |  | 2020-11-19 | 2020-11-19 |  |  |  |  |  |  |  |  |  |  |  |  |
| MWH06.C2.E1260 |  | AHU - ROJ COLO-2 Cell- 1 | milestone | 0d | 2020-11-19 A | 2020-11-19 A | MWH06.C2.C1160 | 100% | 2021-01-02 | 2021-01-02 |  | 348 | 2 |  | 1 | 4 | 51 | 2 |
| MWH06.C2.E1270 |  | AHU - ROJ COLO-2 Cell- 2 | milestone | 0d | 2020-11-19 A | 2020-11-19 A | MWH06.C2.C2140 | 100% | 2021-01-02 | 2021-01-02 |  | 350 | 2 |  | 2 | 4 | 51 | 2 |
| MWH06.C2.E1330 |  | AHU - ROJ COLO-2 Cell- 4 | milestone | 0d | 2020-11-19 A | 2020-11-19 A | MWH06.C2.C4150 | 100% | 2021-01-02 | 2021-01-02 |  | 352 | 2 |  | 4 | 4 | 51 | 2 |
| MWH06.C2.E1340 |  | AHU - ROJ COLO-2 Cell- 3 | milestone | 0d | 2020-11-19 A | 2020-11-19 A | MWH06.C2.C3090, MWH06.C2.C3190 | 100% | 2021-01-07 | 2021-01-07 |  | 354 | 2 |  | 3 | 4 | 51 | 2 |

| ID | WBS | Activity | Type | Duration | Start | Finish | Predecessors | Complete | Planned start | Planned finish | MSP Activity ID | COLO | TRADE | MSFT-Funding Releases | CELL | WBS | VECA % Complete | HOT ITEMS | Critical Path-2 |
| --- | --- | --- | --- | --- | --- | --- | --- | --- | --- | --- | --- | --- | --- | --- | --- | --- | --- | --- | --- |
|  | 3 | **COLO-3** |  |  | 2020-12-28 | 2020-12-28 |  |  |  |  |  |  |  |  |  |  |  |  |  |
| MWH06.C3.E1140 |  | AHU - ROJ COLO-3 Cell- 1 | milestone | 0d | 2020-12-28 A | 2020-12-28 A | MWH06.C3.C1070 | 100% | 2021-01-02 | 2021-01-02 | 358 | 3 | 51 | 2 | 1 | 4 |  |  |  |
| MWH06.C3.E1150 |  | AHU - ROJ COLO-3 Cell- 2 | milestone | 0d | 2020-12-28 A | 2020-12-28 A | MWH06.C3.C2070 | 100% | 2021-01-02 | 2021-01-02 | 362 | 3 | 51 | 2 | 2 | 4 |  |  |  |
| MWH06.C3.E1300 |  | AHU - ROJ COLO-3 Cell- 3 | milestone | 0d | 2020-12-28 A | 2020-12-28 A | MWH06.C3.C3090 | 100% | 2021-01-02 | 2021-01-02 | 360 | 3 | 51 | 2 | 3 | 4 |  |  |  |
| MWH06.C3.E1310 |  | AHU - ROJ COLO-3 Cell- 4 | milestone | 0d | 2020-12-28 A | 2020-12-28 A | MWH06.C3.C4110 | 100% | 2021-01-08 | 2021-01-08 | 364 | 3 | 51 | 2 | 4 | 4 |  |  |  |
|  | 4 | **COLO-4** |  |  | 2021-02-20 | 2021-03-10 |  |  |  |  |  |  |  |  |  |  |  |  |  |
| MWH06.C4.E1290 |  | AHU - ROJ COLO-4 Cell- 2 | milestone | 0d | 2021-02-20 A | 2021-02-20 A | MWH06.C4.C2130 | 100% | 2021-05-15 | 2021-05-15 | 369 | 4 | 51 | 2 | 2 | 4 |  |  |  |
| MWH06.C4.E1300 |  | AHU - ROJ COLO-4 Cell- 1 | milestone | 0d | 2021-03-06 A | 2021-03-06 A | MWH06.C4.C1130 | 100% | 2021-05-15 | 2021-05-15 | 373 | 4 | 51 | 2 | 1 | 4 |  |  |  |
| MWH06.C4.E1330 |  | AHU - ROJ COLO-4 Cell- 4 | milestone | 0d | 2021-03-09 A | 2021-03-09 A | MWH06.C4.C4140 | 100% | 2021-06-01 | 2021-06-01 | 371 | 4 | 51 | 2 | 4 | 4 |  |  |  |
| MWH06.C4.E1320 |  | AHU - ROJ COLO-4 Cell- 3 | milestone | 0d | 2021-03-10 A | 2021-03-10 A | MWH06.C4.C3140 | 100% | 2021-06-01 | 2021-06-01 | 367 | 4 | 51 | 2 | 3 | 4 |  |  |  |
|  | 2 | **UPM** |  |  | 2020-09-24 | 2020-12-16 |  |  |  |  |  |  |  |  |  |  |  |  |  |
|  | 1 | **COLO-1** |  |  | 2020-09-24 | 2020-10-19 |  |  |  |  |  |  |  |  |  |  |  |  |  |
| MWH06.C1.E1000 |  | UPM ROJ COLO-1 Cell-1 | milestone | 0d | 2020-09-24 A | 2020-09-24 A | MWH06.C1.C1010 | 100% | 2020-09-28 | 2020-09-28 | 377 | 1 | 4 |  | 1 | 3 | 100 |  |  |
| MWH06.C1.E1080 |  | UPM ROJ COLO-1 Cell-3 | milestone | 0d | 2020-10-09 A | 2020-10-09 A | MWH06.C1.C3020 | 100% | 2020-11-02 | 2020-11-02 | 379 | 1 | 4 |  | 3 | 3 |  | 5 | 1 |
| MWH06.C1.E1030 |  | UPM ROJ COLO-1 Cell-2 | milestone | 0d | 2020-10-19 A | 2020-10-19 A | MWH06.C1.C2010 | 100% | 2020-11-02 | 2020-11-02 | 381 | 1 | 4 |  | 2 | 3 |  |  |  |
| MWH06.C1.E1100 |  | UPM ROJ COLO-1 Cell-4 | milestone | 0d | 2020-10-19 A | 2020-10-19 A | MWH06.C1.C4020 | 100% | 2020-11-02 | 2020-11-02 | 383 | 1 | 4 |  | 4 | 3 |  |  |  |
|  | 2 | **COLO-2** |  |  | 2020-11-04 | 2020-11-13 |  |  |  |  |  |  |  |  |  |  |  |  |  |
| MWH06.C2.E1030 |  | UPM - ROJ - COLO2- Cell-2 | milestone | 0d | 2020-11-04 A | 2020-11-04 A | MWH06.C2.C2010 | 100% | 2020-11-30 | 2020-11-30 | 390 | 2 | 4 | 2 | 2 | 3 |  |  |  |
| MWH06.C2.E1100 |  | UPM - ROJ - COLO2- Cell-4 | milestone | 0d | 2020-11-05 A | 2020-11-05 A | MWH06.C2.C4010 | 100% | 2020-11-30 | 2020-11-30 | 392 | 2 | 4 | 2 | 4 | 3 |  |  |  |
| MWH06.C2.E1000 |  | UPM - ROJ - COLO2- Cell-1 | milestone | 0d | 2020-11-13 A | 2020-11-13 A | MWH06.C2.C1020 | 100% | 2020-11-30 | 2020-11-30 | 386 | 2 | 4 | 2 | 1 | 3 |  |  |  |
| MWH06.C2.E1080 |  | UPM - ROJ - COLO2- Cell-3 | milestone | 0d | 2020-11-13 A | 2020-11-13 A | MWH06.C2.C3020 | 100% | 2020-11-30 | 2020-11-30 | 388 | 2 | 4 | 2 | 3 | 3 |  |  |  |
|  | 3 | **COLO-3** |  |  | 2020-12-02 | 2020-12-09 |  |  |  |  |  |  |  |  |  |  |  |  |  |
| MWH06.C3.E1000 |  | UPM - ROJ - COLO3- Cell-1 | milestone | 0d | 2020-12-02 A | 2020-12-02 A | MWH06.C3.C1020 | 100% | 2021-01-02 | 2021-01-02 | 395 | 3 | 4 | 2 | 1 | 3 |  |  |  |
| MWH06.C3.E1020 |  | UPM - ROJ - COLO3- Cell-2 | milestone | 0d | 2020-12-02 A | 2020-12-02 A | MWH06.C3.C2010 | 100% | 2021-01-02 | 2021-01-02 | 399 | 3 | 4 | 2 | 2 | 3 |  |  |  |
| MWH06.C3.E1080 |  | UPM - ROJ - COLO3- Cell-3 | milestone | 0d | 2020-12-09 A | 2020-12-09 A | MWH06.C3.C3020 | 100% | 2021-01-02 | 2021-01-02 | 397 | 3 | 4 | 2 | 3 | 3 |  |  |  |
| MWH06.C3.E1100 |  | UPM - ROJ - COLO3- Cell-4 | milestone | 0d | 2020-12-09 A | 2020-12-09 A | MWH06.C3.C4010 | 100% | 2021-01-02 | 2021-01-02 | 401 | 3 | 4 | 2 | 4 | 3 |  |  |  |

| ID | WBS | Activity | Type | Duration | Start | Finish | Predecessors | Complete | Planned start | Planned finish | MSP Activity ID | COLO | TRADE | MSFT-Funding Releases | CELL | WBS | Critical Path | CRITICAL PATH-3 |
| --- | --- | --- | --- | --- | --- | --- | --- | --- | --- | --- | --- | --- | --- | --- | --- | --- | --- | --- |
|  | 4 | **COLO-4** |  |  | 2020-12-04 | 2020-12-16 |  |  |  |  |  |  |  |  |  |  |  |  |
| MWH06.C4.E1000 |  | UPM - ROJ - COLO-4 Cell- 1 | milestone | 0d | 2020-12-04 A | 2020-12-04 A | MWH06.C4.C1030 | 100% | 2021-01-02 | 2021-01-02 | 404 | 4 | 4 | 2 | 1 | 3 |  |  |
| MWH06.C4.E1080 |  | UPM - ROJ - COLO-4 Cell- 3 | milestone | 0d | 2020-12-04 A | 2020-12-04 A | MWH06.C4.C3030 | 100% | 2021-01-02 | 2021-01-02 | 406 | 4 | 4 | 2 | 3 | 3 |  |  |
| MWH06.C4.E1030 |  | UPM - ROJ - COLO-4 Cell- 2 | milestone | 0d | 2020-12-16 A | 2020-12-16 A | MWH06.C4.C2030 | 100% | 2021-01-02 | 2021-01-02 | 408 | 4 | 4 | 2 | 2 | 3 |  |  |
| MWH06.C4.E1100 |  | UPM - ROJ - COLO-4 Cell- 4 | milestone | 0d | 2020-12-16 A | 2020-12-16 A | MWH06.C4.C4030 | 100% | 2021-01-02 | 2021-01-02 | 410 | 4 | 4 | 2 | 4 | 3 |  |  |
|  | 3 | **Fluid Cooler** |  |  | 2020-11-12 | 2021-02-05 |  |  |  |  |  |  |  |  |  |  |  |  |
|  | 1 | **COLO-1** |  |  | 2020-11-12 | 2020-11-13 |  |  |  |  |  |  |  |  |  |  |  |  |
| MWH06.C1.E1120 |  | Fluid Cooler - ROJ COLO -1 Cell- 1 | milestone | 0d | 2020-11-12 A | 2020-11-12 A | MWH06.C1.C1070 | 100% | 2020-11-30 | 2020-11-30 | 414 | 1 | 51 | 1C | 1 | 3 | 6 | CP-1 |
| MWH06.C1.E1240 |  | Fluid Cooler - ROJ COLO -1 Cell- 4 | milestone | 0d | 2020-11-12 A | 2020-11-12 A | MWH06.C1.C4080 | 100% | 2020-11-30 | 2020-11-30 | 420 | 1 | 51 | 1C | 4 | 3 |  |  |
| MWH06.C1.E1260 |  | Fluid Cooler - ROJ COLO -1 Cell- 3 | milestone | 0d | 2020-11-12 A | 2020-11-12 A | MWH06.C1.C3100 | 100% | 2020-11-30 | 2020-11-30 | 416 | 1 | 51 | 1C | 3 | 3 |  |  |
| MWH06.C1.E1160 |  | Fluid Cooler - ROJ COLO -1 Cell- 2 | milestone | 0d | 2020-11-13 A | 2020-11-13 A | MWH06.C1.C2070 | 100% | 2020-11-30 | 2020-11-30 | 418 | 1 | 51 | 1C | 2 | 3 |  |  |
|  | 2 | **COLO-2** |  |  | 2021-01-06 | 2021-01-06 |  |  |  |  |  |  |  |  |  |  |  |  |
| MWH06.C2.E1140 |  | Fluid Cooler - ROJ COLO -2 Cell-1 | milestone | 0d | 2021-01-06 A | 2021-01-06 A | MWH06.C2.C1070 | 100% | 2021-02-01 | 2021-02-01 | 423 | 2 | 51 | 2 | 1 | 3 |  |  |
| MWH06.C2.E1220 |  | Fluid Cooler - ROJ COLO -2 Cell-3 | milestone | 0d | 2021-01-06 A | 2021-01-06 A | MWH06.C2.C3070 | 100% | 2021-02-01 | 2021-02-01 | 425 | 2 | 51 | 2 | 3 | 3 |  |  |
| MWH06.C2.E1240 |  | Fluid Cooler - ROJ COLO -2 Cell-2 | milestone | 0d | 2021-01-06 A | 2021-01-06 A | MWH06.C2.C2110 | 100% | 2021-02-01 | 2021-02-01 | 427 | 2 | 51 | 2 | 2 | 3 |  |  |
|  | 3 | **COLO-3** |  |  | 2020-12-30 | 2021-01-15 |  |  |  |  |  |  |  |  |  |  |  |  |
| MWH06.C3.E1180 |  | Fluid Cooler - ROJ COLO -3 Cell-1 | milestone | 0d | 2020-12-30 A | 2020-12-30 A | MWH06.C3.C1100 | 100% | 2021-03-31 | 2021-03-31 | 430 | 3 | 51 | 2 | 1 | 3 |  |  |
| MWH06.C3.E1200 |  | Fluid Cooler - ROJ COLO -3 Cell-2 | milestone | 0d | 2021-01-15 A | 2021-01-15 A | MWH06.C3.C2100 | 100% | 2021-02-01 | 2021-02-01 | 432 | 3 | 51 | 2 | 2 | 3 |  |  |
| MWH06.C3.E1290 |  | Fluid Cooler - ROJ COLO -3 Cell-4 | milestone | 0d | 2021-01-15 A | 2021-01-15 A | MWH06.C3.C4090 | 100% | 2021-02-01 | 2021-02-01 | 434 | 3 | 51 | 2 | 4 | 3 |  |  |
|  | 4 | **COLO-4** |  |  | 2021-02-05 | 2021-02-05 |  |  |  |  |  |  |  |  |  |  |  |  |
| MWH06.C4.E1140 |  | Fluid Cooler - ROJ COLO -4 Cell-1 | milestone | 0d | 2021-02-05 A | 2021-02-05 A | MWH06.C4.C1080 | 100% | 2021-05-06 | 2021-05-06 | 437 | 4 | 51 | 2 | 1 | 3 |  |  |
| MWH06.C4.E1160 |  | Fluid Cooler - ROJ COLO -4 Cell-2 | milestone | 0d | 2021-02-05 A | 2021-02-05 A | MWH06.C4.C2080 | 100% | 2021-04-30 | 2021-04-30 | 441 | 4 | 51 | 2 | 2 | 3 |  |  |
| MWH06.C4.E1240 |  | Fluid Cooler - ROJ COLO -4 Cell-3 | milestone | 0d | 2021-02-05 A | 2021-02-05 A | MWH06.C4.C3080 | 100% | 2021-04-30 | 2021-04-30 | 439 | 4 | 51 | 2 | 3 | 3 |  |  |
| MWH06.C4.E1260 |  | Fluid Cooler - ROJ COLO -4 Cell-4 | milestone | 0d | 2021-02-05 A | 2021-02-05 A | MWH06.C4.C4080 | 100% | 2021-04-30 | 2021-04-30 | 443 | 4 | 51 | 2 | 4 | 3 |  |  |

| ID | WBS | Activity | Type | Duration | Start | Finish | Predecessors | Complete | Planned start | Planned finish | MSP Activity ID | COLO | TRADE | MSFT-Funding Releases | CELL | WBS | HOT ITEMS | MWH06- TRADES | CRITICAL PATH-3 |
| --- | --- | --- | --- | --- | --- | --- | --- | --- | --- | --- | --- | --- | --- | --- | --- | --- | --- | --- | --- |
|  | 4 | **Generator** |  |  | 2020-10-02 | 2020-12-16 |  |  |  |  |  |  |  |  |  |  |  |  |  |
|  | 1 | **COLO-1** |  |  | 2020-10-02 | 2020-10-21 |  |  |  |  |  |  |  |  |  |  |  |  |  |
| MWH06.C1.E1060 |  | Generator ROJ COLO 1- Cell-2 | milestone | 0d | 2020-10-02 A | 2020-10-02 A | MWH06.C1.C2050 | 100% | 2020-11-30 | 2020-11-30 | 449 | 1 | 4 | 1C | 2 | 3 |  |  |  |
| MWH06.C1.E1040 |  | Generator ROJ COLO 1- Cell-1 | milestone | 0d | 2020-10-10 A | 2020-10-10 A | MWH06.C1.C1050 | 100% | 2020-11-30 | 2020-11-30 | 447 | 1 | 4 | 1C | 1 | 3 |  |  |  |
| MWH06.C1.E1180 |  | Generator ROJ COLO 1- Cell-3 | milestone | 0d | 2020-10-14 A | 2020-10-14 A | MWH06.C1.C3050 | 100% | 2020-11-30 | 2020-11-30 | 448 | 1 | 4 | 1C | 3 | 3 |  |  |  |
| MWH06.C1.E1200 |  | Generator ROJ COLO 1- Cell-4 | milestone | 0d | 2020-10-21 A | 2020-10-21 A | MWH06.C1.C4050 | 100% | 2020-11-30 | 2020-11-30 | 450 | 1 | 4 | 1C | 4 | 3 |  |  |  |
|  | 2 | **COLO-2** |  |  | 2020-11-03 | 2020-11-19 |  |  |  |  |  |  |  |  |  |  |  |  |  |
| MWH06.C2.E1060 |  | Generator ROJ COLO 2- Cell - 2 | milestone | 0d | 2020-11-03 A | 2020-11-03 A | MWH06.C2.C2030 | 100% | 2020-11-30 | 2020-11-30 | 454 | 2 | 4 | 2 | 2 | 3 |  |  |  |
| MWH06.C2.E1180 |  | Generator ROJ COLO 2- Cell - 4 | milestone | 0d | 2020-11-05 A | 2020-11-05 A | MWH06.C2.C4040 | 100% | 2020-11-30 | 2020-11-30 | 455 | 2 | 4 | 2 | 4 | 3 |  |  |  |
| MWH06.C2.E1050 |  | Generator ROJ COLO 2- Cell - 1 | milestone | 0d | 2020-11-17 A | 2020-11-17 A | MWH06.C2.C1040 | 100% | 2020-11-30 | 2020-11-30 | 452 | 2 | 4 | 2 | 1 | 3 |  |  |  |
| MWH06.C2.E1160 |  | Generator ROJ COLO 2- Cell - 3 | milestone | 0d | 2020-11-19 A | 2020-11-19 A | MWH06.C2.C3050 | 100% | 2020-11-30 | 2020-11-30 | 453 | 2 | 4 | 2 | 3 | 3 |  |  |  |
|  | 3 | **COLO-3** |  |  | 2020-11-30 | 2020-12-11 |  |  |  |  |  |  |  |  |  |  |  |  |  |
| MWH06.C3.E1040 |  | Generator ROJ COLO 3- Cell - 1 | milestone | 0d | 2020-11-30 A | 2020-11-30 A | MWH06.C3.C1050 | 100% | 2021-01-02 | 2021-01-02 | 457 | 3 | 4 | 2 | 1 | 3 |  |  |  |
| MWH06.C3.E1220 |  | Generator ROJ COLO 3- Cell - 3 | milestone | 0d | 2020-12-04 A | 2020-12-04 A | MWH06.C3.C3050 | 100% | 2021-01-02 | 2021-01-02 | 458 | 3 | 4 | 2 | 3 | 3 |  |  |  |
| MWH06.C3.E1060 |  | Generator ROJ COLO 3- Cell - 2 | milestone | 0d | 2020-12-11 A | 2020-12-11 A | MWH06.C3.C2050 | 100% | 2021-01-02 | 2021-01-02 | 459 | 3 | 4 | 2 | 2 | 3 |  |  |  |
| MWH06.C3.E1240 |  | Generator ROJ COLO 3- Cell - 4 | milestone | 0d | 2020-12-11 A | 2020-12-11 A | MWH06.C3.C4050 | 100% | 2021-01-02 | 2021-01-02 | 460 | 3 | 4 | 2 | 4 | 3 |  |  |  |
|  | 4 | **COLO-4** |  |  | 2020-12-10 | 2020-12-16 |  |  |  |  |  |  |  |  |  |  |  |  |  |
| MWH06.C4.E1060 |  | Generator ROJ COLO 4- Cell - 1 | milestone | 0d | 2020-12-10 A | 2020-12-10 A | MWH06.C4.C1060 | 100% | 2021-01-02 | 2021-01-02 | 465 | 4 | 4 | 2 | 1 | 3 |  |  |  |
| MWH06.C4.E1180 |  | Generator ROJ COLO 4- Cell - 3 | milestone | 0d | 2020-12-10 A | 2020-12-10 A | MWH06.C4.C3060 | 100% | 2021-01-02 | 2021-01-02 | 462 | 4 | 4 | 2 | 3 | 3 |  |  |  |
| MWH06.C4.E1040 |  | Generator ROJ COLO 4- Cell - 2 | milestone | 0d | 2020-12-16 A | 2020-12-16 A | MWH06.C4.C2060 | 100% | 2021-01-02 | 2021-01-02 | 463 | 4 | 4 | 2 | 2 | 3 |  |  |  |
| MWH06.C4.E1200 |  | Generator ROJ COLO 4- Cell - 4 | milestone | 0d | 2020-12-16 A | 2020-12-16 A | MWH06.C4.C4060 | 100% | 2021-01-02 | 2021-01-02 | 464 | 4 | 4 | 2 | 4 | 3 |  |  |  |
|  | 6 | **PDU** |  |  | 2021-02-04 | 2021-04-29 |  |  |  |  |  |  |  |  |  |  |  |  |  |
|  | 1 | **COLO-1** |  |  | 2021-02-04 | 2021-02-24 |  |  |  |  |  |  |  |  |  |  |  |  |  |
| MWH06.C1.E1340 |  | PDU ROJ COLO-1 Cell-1 | milestone | 0d | 2021-02-04 A | 2021-02-04 A | MWH06.C1.C1200 SS, MWH06.C1.C1260 SS+7d | 100% | 2021-03-01 | 2021-03-01 | 468 | 1 | 4 | 1C | 1 | 5 | 4 | 26 | CP-2 |
| MWH06.C1.E1360 |  | PDU ROJ COLO-1 Cell-2 | milestone | 0d | 2021-02-04 A | 2021-02-04 A | MWH06.C1.C2240 | 100% | 2021-03-01 | 2021-03-01 | 472 | 1 | 4 | 1C | 2 | 5 | 4 | 26 | CP-2 |
| MWH06.C1.E1430 |  | PDU ROJ COLO-1 Cell-3 | milestone | 0d | 2021-02-24 A | 2021-02-24 A | MWH06.C1.C3220 | 100% | 2021-03-09 | 2021-03-09 | 470 | 1 | 4 | 1C | 3 | 5 | 4 | 26 | CP-2 |
| MWH06.C1.E1450 |  | PDU ROJ COLO-1 Cell-4 | milestone | 0d | 2021-02-24 A | 2021-02-24 A | MWH06.C1.C4210 SS | 100% | 2021-03-10 | 2021-03-10 | 474 | 1 | 4 | 1C | 4 | 5 | 4 | 26 | CP-2 |

| ID | WBS | Activity | Type | Duration | Start | Finish | Predecessors | Complete | Planned start | Planned finish | Constraint | MSP Activity ID | COLO | TRADE | MSFT-Funding Releases | CELL | WBS | MWH06- TRADES |
| --- | --- | --- | --- | --- | --- | --- | --- | --- | --- | --- | --- | --- | --- | --- | --- | --- | --- | --- |
|  | 2 | **COLO-2** |  |  | 2021-03-15 | 2021-04-08 |  |  |  |  |  |  |  |  |  |  |  |  |
| MWH06.C2.E1420 |  | PDU ROJ COLO-2 Cell-3 | milestone | 0d | 2021-03-15 A | 2021-03-15 A | MWH06.C2.C3260 SS | 100% | 2021-04-30 | 2021-04-30 |  | 479 | 2 | 4 | 2 | 3 | 5 | 26 |
| MWH06.C2.E1370 |  | PDU ROJ COLO-2 Cell-1 | milestone | 0d | 2021-03-20 A | 2021-03-20 A | MWH06.C2.C1270 SS | 100% | 2021-03-31 | 2021-03-31 |  | 477 | 2 | 4 | 2 | 1 | 5 | 26 |
| MWH06.C2.E1390 |  | PDU ROJ COLO-2 Cell-2 | milestone | 0d | 2021-03-20 A | 2021-03-20 A | MWH06.C2.C2260 SS | 100% | 2021-03-31 | 2021-03-31 |  | 481 | 2 | 4 | 2 | 2 | 5 | 26 |
| MWH06.C2.E1440 |  | PDU ROJ COLO-2 Cell-4 | milestone | 0d | 2021-04-08 A | 2021-04-08 A | MWH06.C2.C4210 SS | 100% | 2021-04-30 | 2021-04-30 |  | 483 | 2 | 4 | 2 | 4 | 5 | 26 |
|  | 3 | **COLO-3** |  |  | 2021-03-02 | 2021-03-19 |  |  |  |  |  |  |  |  |  |  |  |  |
| MWH06.C3.E1380 |  | PDU ROJ COLO-3 Cell-1 | milestone | 0d | 2021-03-02 A | 2021-03-02 A | MWH06.C3.C1350 | 100% | 2021-04-30 | 2021-04-30 |  | 486 | 3 | 4 | 2 | 1 | 5 | 26 |
| MWH06.C3.E1420 |  | PDU ROJ COLO-3 Cell-3 | milestone | 0d | 2021-03-04 A | 2021-03-04 A | MWH06.C3.C3310 | 100% | 2021-05-07 | 2021-05-07 | start on or after 2021-05-07 | 488 | 3 | 4 | 2 | 3 | 5 | 26 |
| MWH06.C3.E1400 |  | PDU ROJ COLO-3 Cell-2 | milestone | 0d | 2021-03-15 A | 2021-03-15 A | MWH06.C3.C2340 | 100% | 2021-05-07 | 2021-05-07 | start on or after 2021-05-07 | 490 | 3 | 4 | 2 | 2 | 5 | 26 |
| MWH06.C3.E1440 |  | PDU ROJ COLO-3 Cell-4 | milestone | 0d | 2021-03-19 A | 2021-03-19 A | MWH06.C3.C4340 | 100% | 2021-05-13 | 2021-05-13 | start on or after 2021-05-13 | 492 | 3 | 4 | 2 | 4 | 5 | 26 |
|  | 4 | **COLO-4** |  |  | 2021-03-29 | 2021-04-29 |  |  |  |  |  |  |  |  |  |  |  |  |
| MWH06.C4.E1400 |  | PDU ROJ COLO-4 Cell-1 | milestone | 0d | 2021-03-29 A | 2021-03-29 A | MWH06.C4.C1350 | 100% | 2021-05-13 | 2021-05-13 |  | 495 | 4 | 4 | 2 | 1 | 5 | 26 |
| MWH06.C4.E1420 |  | PDU ROJ COLO-4 Cell-2 | milestone | 0d | 2021-04-12 A | 2021-04-12 A | MWH06.C4.C2320 | 100% | 2021-05-19 | 2021-05-19 |  | 499 | 4 | 4 | 2 | 2 | 5 | 26 |
| MWH06.C4.E1440 |  | PDU ROJ COLO-4 Cell-3 | milestone | 0d | 2021-04-26 A | 2021-04-26 A | MWH06.C4.C3340 | 100% | 2021-05-21 | 2021-05-21 |  | 497 | 4 | 4 | 2 | 3 | 5 | 26 |
| MWH06.C4.E1460 |  | PDU ROJ COLO-4 Cell-4 | milestone | 0d | 2021-04-29 A | 2021-04-29 A | MWH06.C4.C4320 | 100% | 2021-06-07 | 2021-06-07 |  | 501 | 4 | 4 | 2 | 4 | 5 | 26 |
|  | 7 | **Other electrical Equipment** |  |  | 2020-06-27 | 2020-11-25 |  |  |  |  |  |  |  |  |  |  |  |  |
| MWH06-2505 |  | ATS- ROJ | milestone | 0d | 2020-06-27 A | 2020-06-27 A | MWH06AD-1016 | 100% | 2020-06-29 | 2020-06-29 |  | 508 | S |  |  | All |  |  |
| MWH06-2622 |  | Admin Gen- ROJ | milestone | 0d | 2020-09-25 A | 2020-09-25 A | MWH06-1961 | 100% | 2020-11-30 | 2020-11-30 | start on or after 2020-11-24 | 508 | S |  |  | All |  |  |
| MWH06-2504 |  | URS - ROJ | milestone | 0d | 2020-11-06 A | 2020-11-06 A | MWH06.S.1250 | 100% | 2020-11-30 | 2020-11-30 |  | 506 | S |  |  | All |  |  |
| MWH06-2506 |  | MSB - ROJ | milestone | 0d | 2020-11-06 A | 2020-11-06 A | MWH06AD-1016 | 100% | 2020-11-30 | 2020-11-30 |  | 510 | S |  |  | All |  |  |
| MWH06-2507 |  | TCP - ROJ | milestone | 0d | 2020-11-06 A | 2020-11-06 A | MWH06AD-1016 | 100% | 2020-11-30 | 2020-11-30 |  | 511 | S |  |  | All |  |  |
| MWH06-2508 |  | UPS- ROJ | milestone | 0d | 2020-11-06 A | 2020-11-06 A | MWH06AD-1016 | 100% | 2020-11-30 | 2020-11-30 |  | 512 | S |  |  | All |  |  |
| MWH06-2503 |  | UMS - ROJ | milestone | 0d | 2020-11-07 A | 2020-11-07 A | MWH06.S.1370 | 100% | 2020-11-30 | 2020-11-30 |  | 504 | S |  |  | All |  |  |
| MWH06-2624 |  | UPM - ROJ | milestone | 0d | 2020-11-25 A | 2020-11-25 A | MWH06-1961 | 100% | 2020-11-30 | 2020-11-30 |  | 506 | S |  |  | All |  |  |

| ID | WBS | Activity | Type | Duration | Start | Finish | Predecessors | Complete | Planned start | Planned finish | Constraint | Calendar | MSP Activity ID | COLO | CELL | Equipment Deliveries | Critical Path | Critical Path-1 | MER | MWH06- TRADES | Critical Path mer to COLO | COLO CRITICAL | WBS |
| --- | --- | --- | --- | --- | --- | --- | --- | --- | --- | --- | --- | --- | --- | --- | --- | --- | --- | --- | --- | --- | --- | --- | --- |
|  | 3 | **Contractor A Delivarables** |  |  | 2020-06-27 | 2021-05-10 |  |  |  |  |  |  |  |  |  |  |  |  |  |  |  |  |  |
| MWH06-2535 |  | MSFT Delivery - PDU submittal release | milestone | 0d | 2020-08-05 A | 2020-08-05 A | MWH.06.M1000 | 100% | 2020-12-21 | 2020-12-21 |  |  | 514 | 0 | All | 2 |  |  |  |  |  |  |  |
| MWH06-2537 |  | MSFT Delivery - COLO-1 Gen submittal release | milestone | 0d | 2020-10-19 A | 2020-10-19 A | MWH.06.M1000 | 100% | 2020-12-21 | 2020-12-21 |  |  | 514 | 0 | All | 2 |  |  |  |  |  |  |  |
| MWH06-2536 |  | MSFT Delivery - Admin Gen submittal release | milestone | 0d | 2020-10-20 A | 2020-10-20 A | MWH.06.M1000 | 100% | 2020-12-21 | 2020-12-21 |  |  | 514 | 0 | All | 2 |  |  |  |  |  |  |  |
| MWH06-2539 |  | MSFT Delivery - UPM submittal release | milestone | 0d | 2020-11-06 A | 2020-11-06 A | MWH.06.M1000 | 100% | 2020-12-21 | 2020-12-21 |  |  | 514 | 0 | All | 2 |  |  |  |  |  |  |  |
| MWH06-2540 |  | MSFT Delivery - MER submittal COLO-1 | milestone | 0d | 2020-12-21 A | 2020-12-21 A | MWH.06.M1000 | 100% | 2021-03-01 | 2021-03-01 |  |  | 514 | 0 | All | 2 |  |  |  |  |  |  |  |
| MWH06-2527 |  | MSFT Delivery -OFCI submittal release | milestone | 0d | 2021-02-20 A | 2021-02-20 A | MWH.06.M1000, MWH06-1999, MWH06.D1.S1040, MWH06-2535, MWH06-2536, MWH06-2537, MWH06-2538, MWH06-2539, MWH06-2540 | 100% | 2021-03-01 | 2021-03-01 |  |  | 514 | 0 | All |  |  |  |  |  |  |  |  |
| MWH06-2538 |  | MSFT Delivery - COLO-2,3,4 Gen submittal approval | milestone | 0d | 2021-02-20 A | 2021-02-20 A | MWH.06.M1000 | 100% | 2021-03-01 | 2021-03-01 |  |  | 514 | 0 | All | 2 |  |  |  |  |  |  |  |
|  | 1 | **MER** |  |  | 2020-12-16 | 2021-05-10 |  |  |  |  |  |  |  |  |  |  |  |  |  |  |  |  |  |
|  | 1 | **COLO-1** |  |  | 2020-12-16 | 2021-01-08 |  |  |  |  |  |  |  |  |  |  |  |  |  |  |  |  |  |
| MWH06.C1.E1320 |  | MSFT Delivery -MER ROJ COLO 1 CELL 1 (11/6/20) | milestone | 0d | 2020-12-16 A | 2020-12-16 A | MWH-06-01-ROJ-S, MWH06-2527, MWH06-2540, MWH06-9734 | 100% | 2020-12-21 | 2020-12-21 | start on or after 2020-12-17 | 5-10s wo/Holidays Clayco | 518 | 1 | 1 | 2 | (New) | 2 | 3 | MER | 1 |  |  |
| MWH06.C1.E1330 |  | MSFT Delivery -MER ROJ COLO 1 CELL 2 (11/13/20) | milestone | 0d | 2020-12-22 A | 2020-12-22 A | MWH-06-01-ROJ-S, MWH06-2527, MWH06-2540, MWH06-9742 | 100% | 2021-01-02 | 2021-01-02 | start on or after 2020-12-22 |  | 520 | 1 | 2 | 2 |  |  | 3 | MER | 1 | 1 | 3 |
| MWH06.C1.E1380 |  | MSFT Delivery -MER ROJ COLO 1 CELL 3 (11/20/20) | milestone | 0d | 2021-01-06 A | 2021-01-06 A | MWH-06-01-ROJ-S, MWH06-2029, MWH06-2527, MWH06-2540, MWH06-9743 | 100% | 2021-01-11 | 2021-01-11 | start on or after 2021-01-06 |  | 519 | 1 | 3 | 2 |  |  | 3 | MER | 1 |  |  |
| MWH06.C1.E1470 |  | MSFT Delivery -MER ROJ COLO 1 CELL 4 (11/30/20) | milestone | 0d | 2021-01-08 A | 2021-01-08 A | MWH-06-01-ROJ-S, MWH06-9770, MWH06-2029, MWH06-2527, MWH06-2540 | 100% | 2021-01-11 | 2021-01-11 | start on or after 2021-01-08 |  | 521 | 1 | 4 | 2 |  |  | 3 | MER | 1 | 1 |  |
|  | 6 | **COLO 2** |  |  | 2021-02-04 | 2021-03-08 |  |  |  |  |  |  |  |  |  |  |  |  |  |  |  |  |  |
| MWH06.C2.E1300 |  | MSFT Delivery -MER ROJ COLO 2 CELL 1 (12/15/20) | milestone | 0d | 2021-02-04 A | 2021-02-04 A | MWH-06-02-ROJ-S, MWH06-9746, A1170, MWH06-2527, MWH06-2540 | 100% | 2021-03-01 | 2021-03-01 | start on or after 2021-02-04 | 5-10s wo/Holidays Clayco | 523 | 2 | 1 | 2 |  |  | 3 | MER | 2 |  |  |
| MWH06.C2.E1310 |  | MSFT Delivery -MER ROJ COLO 2 CELL 2 (12/22/20) | milestone | 0d | 2021-02-18 A | 2021-02-18 A | MWH-06-02-ROJ-S, MWH06-9747, A1170, MWH06-2527, MWH06-2540 | 100% | 2021-03-01 | 2021-03-01 | start on or after 2021-02-18 |  | 524 | 2 | 2 | 2 |  |  | 3 | MER | 2 |  | 3 |
| MWH06.C2.E1360 |  | MSFT Delivery -MER ROJ COLO 2 CELL 3 (12/28/20) | milestone | 0d | 2021-02-23 A | 2021-02-23 A | MWH-06-02-ROJ-S, MWH06-9748, A1170, MWH06-2527, MWH06-2540 | 100% | 2021-03-01 | 2021-03-01 | start on or after 2021-02-23 |  | 525 | 2 | 3 | 2 |  |  | 3 | MER | 2 |  |  |
| MWH06.C2.E1410 |  | MSFT Delivery -MER ROJ COLO 2 CELL 4 (1/5/20) | milestone | 0d | 2021-03-08 A | 2021-03-08 A | MWH-06-02-ROJ-S, MWH06-9771, A1170, MWH06-2527, MWH06-2540 | 100% | 2021-03-22 | 2021-03-22 | start on or after 2021-03-08 |  | 526 | 2 | 4 | 2 |  |  | 3 | MER | 2 | 2,3,4 |  |
|  | 7 | **COLO 3** |  |  | 2021-04-03 | 2021-04-23 |  |  |  |  |  |  |  |  |  |  |  |  |  |  |  |  |  |
| MWH06.C3.E1340 |  | MSFT Delivery -MER ROJ COLO 3 CELL 1 (1/29/21) | milestone | 0d | 2021-04-03 A | 2021-04-03 A | MWH-06-03-ROJ-S, MWH06-9749, A1170, MWH06-2527, MWH06-2540 | 100% | 2021-04-26 | 2021-04-26 | start on or after 2021-04-02 |  | 528 | 3 | 1 | 2 |  |  | 3 | MER | 3 |  |  |
| MWH06.C3.E1350 |  | MSFT Delivery -MER ROJ COLO 3 CELL 2 (2/5/21) | milestone | 0d | 2021-04-09 A | 2021-04-09 A | MWH-06-03-ROJ-S, MWH06-9750, A1170, MWH06-2527, MWH06-2540 | 100% | 2021-04-26 | 2021-04-26 | start on or after 2021-04-07 |  | 530 | 3 | 2 | 2 |  |  | 3 | MER | 3 |  |  |
| MWH06.C3.E1360 |  | MSFT Delivery -MER ROJ COLO 3 CELL 3 (2/12/21) | milestone | 0d | 2021-04-15 A | 2021-04-15 A | MWH-06-03-ROJ-S, MWH06-9751, A1170, MWH06-2527, MWH06-2540 | 100% | 2021-04-26 | 2021-04-26 | start on or after 2021-04-14 |  | 529 | 3 | 3 | 2 |  |  | 3 | MER | 3 |  |  |
| MWH06.C3.E1370 |  | MSFT Delivery -MER ROJ COLO 3 CELL 4 (2/19/21) | milestone | 0d | 2021-04-23 A | 2021-04-23 A | MWH-06-03-ROJ-S, MWH06-9772, A1170, MWH06-2527, MWH06-2540 | 100% | 2021-04-26 | 2021-04-26 | start on or after 2021-04-19 |  | 531 | 3 | 4 | 2 |  |  | 3 | MER | 3 |  |  |

| ID | WBS | Activity | Type | Duration | Start | Finish | Predecessors | Complete | Planned start | Planned finish | Constraint | MSP Activity ID | COLO | MER | CELL | Equipment Deliveries | MWH06- TRADES | Critical Path mer to COLO | TRADE | MSFT-Funding Releases | WBS |
| --- | --- | --- | --- | --- | --- | --- | --- | --- | --- | --- | --- | --- | --- | --- | --- | --- | --- | --- | --- | --- | --- |
|  | 5 | **COLO 4** |  |  | 2021-04-27 | 2021-05-10 |  |  |  |  |  |  |  |  |  |  |  |  |  |  |  |
| MWH06.C4.E1360 |  | MSFT Delivery -MER ROJ COLO 4 CELL 1 (3/12/21) | milestone | 0d | 2021-04-27 A | 2021-04-27 A | MWH-06-04-ROJ-S, MWH06-9752, A1170, MWH06-2527, MWH06-2540 | 100% | 2021-04-28 | 2021-04-28 | start on or after 2021-04-28 | 533 | 4 | 3 | 1 | 2 | MER | 4 |  |  |  |
| MWH06.C4.E1380 |  | MSFT Delivery -MER ROJ COLO 4 CELL 3 (3/26/21) | milestone | 0d | 2021-04-29 A | 2021-04-29 A | MWH-06-04-ROJ-S, MWH06-9754 | 100% | 2021-04-30 | 2021-04-30 | start on or after 2021-04-29 | 534 | 4 | 3 | 3 | 2 | MER | 4 |  |  |  |
| MWH06.C4.E1370 |  | MSFT Delivery -MER ROJ COLO 4 CELL 2 (3/19/21) | milestone | 0d | 2021-05-03 A | 2021-05-03 A | MWH-06-04-ROJ-S, MWH06-9753, A1170, MWH06-2527, MWH06-2540 | 100% | 2021-05-17 | 2021-05-17 | start on or after 2021-05-03 | 535 | 4 | 3 | 2 | 2 | MER | 4 |  |  |  |
| MWH06.C4.E1390 |  | MSFT Delivery -MER ROJ COLO 4 CELL 4 (4/2/21) | milestone | 0d | 2021-05-10 A | 2021-05-10 A | MWH-06-04-ROJ-S, MWH06-9773, A1170, MWH06-2527, MWH06-2540 | 100% | 2021-05-17 | 2021-05-17 | start on or after 2021-05-10 | 536 | 4 | 3 | 4 | 2 | MER | 4 |  |  |  |
|  | 2 | **AHU** |  |  | 2020-11-17 | 2021-03-19 |  |  |  |  |  |  |  |  |  |  |  |  |  |  |  |
|  | 1 | **COLO-1** |  |  | 2020-11-17 | 2020-12-07 |  |  |  |  |  |  |  |  |  |  |  |  |  |  |  |
| MWH06.C1.E1300 |  | MSFT Delivery -AHU - ROJ COLO-1 Cell- 1(11/2/20) | milestone | 0d | 2020-11-17 A | 2020-11-17 A | MWH-06-01-ROJ-S, MWH06-2527 | 100% | 2020-11-30 | 2020-11-30 | start on or after 2020-11-16 | 539 | 1 |  | 1 | 2 |  |  | 51 | 1C | 4 |
| MWH06.C1.E1310 |  | MSFT Delivery -AHU - ROJ COLO-1 Cell- 2 (11/2/20) | milestone | 0d | 2020-11-17 A | 2020-11-17 A | MWH-06-01-ROJ-S, MWH06-2527 | 100% | 2020-11-30 | 2020-11-30 | start on or after 2020-11-16 | 541 | 1 |  | 2 | 2 |  |  | 51 | 1C | 4 |
| MWH06.C1.E1410 |  | MSFT Delivery -AHU - ROJ COLO-1 Cell- 3 | milestone | 0d | 2020-11-25 A | 2020-11-25 A | MWH-06-01-ROJ-S, MWH06-2527 | 100% | 2020-11-30 | 2020-11-30 | start on or after 2020-11-18 | 540 | 1 |  | 3 | 2 |  |  | 51 | 1C | 4 |
| MWH06.C1.E1420 |  | MSFT Delivery -AHU - ROJ COLO-1 Cell- 4 | milestone | 0d | 2020-12-07 A | 2020-12-07 A | MWH-06-01-ROJ-S, MWH06-2527 | 100% | 2020-12-21 | 2020-12-21 | start on or after 2020-12-07 | 542 | 1 |  | 4 | 2 |  |  | 51 | 1C | 4 |
|  | 2 | **COLO-2** |  |  | 2021-02-03 | 2021-02-22 |  |  |  |  |  |  |  |  |  |  |  |  |  |  |  |
| MWH06.C2.E1280 |  | MSFT Delivery -AHU - ROJ COLO-2 Cell- 1 | milestone | 0d | 2021-02-03 A | 2021-02-03 A | MWH-06-02-ROJ-S, MWH06-2527 | 100% | 2021-03-01 | 2021-03-01 | start on or after 2021-02-02 | 545 | 2 |  | 1 | 2 |  |  | 51 | 2 | 4 |
| MWH06.C2.E1290 |  | MSFT Delivery -AHU - ROJ COLO-2 Cell- 2 | milestone | 0d | 2021-02-16 A | 2021-02-16 A | MWH-06-02-ROJ-S, MWH06-2527 | 100% | 2021-03-01 | 2021-03-01 | start on or after 2021-02-16 | 546 | 2 |  | 2 | 2 |  |  | 51 | 2 | 4 |
| MWH06.C2.E1320 |  | MSFT Delivery -AHU - ROJ COLO-2 Cell- 3 | milestone | 0d | 2021-02-16 A | 2021-02-16 A | MWH-06-02-ROJ-S, MWH06-2527 | 100% | 2021-03-01 | 2021-03-01 | start on or after 2021-02-16 | 544 | 2 |  | 3 | 2 |  |  | 51 | 2 | 4 |
| MWH06.C2.E1350 |  | MSFT Delivery -AHU - ROJ COLO-2 Cell- 4 | milestone | 0d | 2021-02-22 A | 2021-02-22 A | MWH-06-02-ROJ-S, MWH06-2527 | 100% | 2021-03-01 | 2021-03-01 | start on or after 2021-02-22 | 547 | 2 |  | 4 | 2 |  |  | 51 | 2 | 4 |
|  | 3 | **COLO-3** |  |  | 2021-02-24 | 2021-03-08 |  |  |  |  |  |  |  |  |  |  |  |  |  |  |  |
| MWH06.C3.E1160 |  | MSFT Delivery -AHU - ROJ COLO-3 Cell- 1 | milestone | 0d | 2021-02-24 A | 2021-02-24 A | MWH-06-03-ROJ-S, MWH06.C3.C1120, MWH06-2527 | 100% | 2021-03-06 | 2021-03-06 | start on or after 2021-02-25 | 549 | 3 |  | 1 | 2 |  |  | 51 | 2 | 4 |
| MWH06.C3.E1170 |  | MSFT Delivery -AHU - ROJ COLO-3 Cell- 2 | milestone | 0d | 2021-03-01 A | 2021-03-01 A | MWH-06-03-ROJ-S, MWH06.C3.C2120, MWH06-2527 | 100% | 2021-03-22 | 2021-03-22 | start on or after 2021-03-01 | 551 | 3 |  | 2 | 2 |  |  | 51 | 2 | 4 |
| MWH06.C3.E1320 |  | MSFT Delivery -AHU - ROJ COLO-3 Cell- 3 | milestone | 0d | 2021-03-05 A | 2021-03-05 A | MWH-06-03-ROJ-S, MWH06.C3.C3120, MWH06-2527 | 100% | 2021-03-22 | 2021-03-22 | start on or after 2021-03-03 | 550 | 3 |  | 3 | 2 |  |  | 51 | 2 | 4 |
| MWH06.C3.E1330 |  | MSFT Delivery -AHU - ROJ COLO-3 Cell- 4 | milestone | 0d | 2021-03-08 A | 2021-03-08 A | MWH-06-03-ROJ-S, MWH06.C3.C4150, MWH06-2527 | 100% | 2021-03-22 | 2021-03-22 | start on or after 2021-03-04 | 552 | 3 |  | 4 | 2 |  |  | 51 | 2 | 4 |
|  | 4 | **COLO-4** |  |  | 2021-03-09 | 2021-03-19 |  |  |  |  |  |  |  |  |  |  |  |  |  |  |  |
| MWH06.C4.E1280 |  | MSFT Delivery -AHU - ROJ COLO-4 Cell- 1 | milestone | 0d | 2021-03-09 A | 2021-03-09 A | MWH-06-04-ROJ-S, MWH06-2527 | 100% | 2021-03-22 | 2021-03-22 | start on or after 2021-03-11 | 554 | 4 |  | 1 | 2 |  |  | 51 | 2 | 4 |
| MWH06.C4.E1310 |  | MSFT Delivery -AHU - ROJ COLO-4 Cell- 2 | milestone | 0d | 2021-03-16 A | 2021-03-16 A | MWH-06-04-ROJ-S, MWH06-2527 | 100% | 2021-03-22 | 2021-03-22 | start on or after 2021-03-15 | 556 | 4 |  | 2 | 2 |  |  | 51 | 2 | 4 |
| MWH06.C4.E1340 |  | MSFT Delivery -AHU - ROJ COLO-4 Cell- 3 | milestone | 0d | 2021-03-17 A | 2021-03-17 A | MWH-06-04-ROJ-S, MWH06-2527 | 100% | 2021-03-22 | 2021-03-22 | start on or after 2021-03-17 | 555 | 4 |  | 3 | 2 |  |  | 51 | 2 | 4 |
| MWH06.C4.E1350 |  | MSFT Delivery -AHU - ROJ COLO-4 Cell- 4 | milestone | 0d | 2021-03-19 A | 2021-03-19 A | MWH-06-04-ROJ-S, MWH06-2527 | 100% | 2021-03-31 | 2021-03-31 | start on or after 2021-03-19 | 557 | 4 |  | 4 | 2 |  |  | 51 | 2 | 4 |

| ID | WBS | Activity | Type | Duration | Start | Finish | Predecessors | Complete | Planned start | Planned finish | Constraint | MSP Activity ID | COLO | TRADE | CELL | WBS | Equipment Deliveries | HOT ITEMS | Critical Path-2 | MSFT-Funding Releases | Critical Path | CRITICAL PATH-3 |
| --- | --- | --- | --- | --- | --- | --- | --- | --- | --- | --- | --- | --- | --- | --- | --- | --- | --- | --- | --- | --- | --- | --- |
|  | 3 | **UPM** |  |  | 2020-11-24 | 2021-01-04 |  |  |  |  |  |  |  |  |  |  |  |  |  |  |  |  |
|  | 1 | **COLO-1** |  |  | 2020-11-24 | 2020-12-08 |  |  |  |  |  |  |  |  |  |  |  |  |  |  |  |  |
| MWH06.C1.E1020 |  | MSFT Delivery -UPM ROJ COLO-1 Cell-2 (PSR ROJ -10/13/2020) | milestone | 0d | 2020-11-24 A | 2020-11-24 A | MWH-06-01-ROJ-S, MWH06-2527, MWH06-2539, MWH06-9739 | 100% | 2020-11-30 | 2020-11-30 | start on or after 2020-11-24 | 562 | 1 | 4 | 2 | 3 | 2 |  |  |  |  |  |
| MWH06.C1.E1090 |  | MSFT Delivery -UPM ROJ COLO-1 Cell-3 (PSR ROJ -9/28/2020) | milestone | 0d | 2020-11-24 A | 2020-11-24 A | MWH-06-01-ROJ-S, MWH06-2527, MWH06-2539, MWH06-9740 | 100% | 2020-11-30 | 2020-11-30 | start on or after 2020-11-24 | 561 | 1 | 4 | 3 | 3 | 2 | 5 | 1 |  |  |  |
| MWH06.C1.E1110 |  | MSFT Delivery -UPM ROJ COLO-1 Cell-4 (PSR ROJ -10/28/2020) | milestone | 0d | 2020-11-24 A | 2020-11-24 A | MWH-06-01-ROJ-S, MWH06-2527, MWH06-2539, MWH06-9741 | 100% | 2020-11-30 | 2020-11-30 | start on or after 2020-11-24 | 563 | 1 | 4 | 4 | 3 | 2 |  |  |  |  |  |
| MWH06.C1.E1010 |  | MSFT Delivery -UPM ROJ COLO-1 Cell-1 (PSR ROJ -9/19/2020) | milestone | 0d | 2020-12-08 A | 2020-12-08 A | MWH-06-01-ROJ-S, MWH06-2527, MWH06-2539, MWH06.D2.S1010 | 100% | 2020-12-21 | 2020-12-21 | start on or after 2020-12-07 | 560 | 1 | 4 | 1 | 3 | 2 |  |  |  |  |  |
|  | 2 | **COLO-2** |  |  | 2020-12-08 | 2020-12-16 |  |  |  |  |  |  |  |  |  |  |  |  |  |  |  |  |
| MWH06.C2.E1010 |  | MSFT Delivery -UPM - ROJ - COLO2- Cell-1 (11/25/2020) | milestone | 0d | 2020-12-08 A | 2020-12-08 A | MWH-06-02-ROJ-S, MWH06-2527, MWH06-2539, MWH06-9891 | 100% | 2020-12-21 | 2020-12-21 | start on or after 2020-12-08 | 565 | 2 | 4 | 1 | 3 | 2 |  |  | 2 |  |  |
| MWH06.C2.E1020 |  | MSFT Delivery -UPM - ROJ - COLO2- Cell-2 (11/25/2020) | milestone | 0d | 2020-12-10 A | 2020-12-10 A | MWH-06-02-ROJ-S, MWH06-2527, MWH06-2539, MWH06-9892 | 100% | 2020-12-21 | 2020-12-21 | start on or after 2020-12-09 | 567 | 2 | 4 | 2 | 3 | 2 |  |  | 2 |  |  |
| MWH06.C2.E1110 |  | MSFT Delivery -UPM - ROJ - COLO2- Cell-4 (11/25/2020) | milestone | 0d | 2020-12-10 A | 2020-12-10 A | MWH-06-02-ROJ-S, MWH06-2527, MWH06-2539, MWH06-9893 | 100% | 2020-12-21 | 2020-12-21 | start on or after 2020-12-09 | 568 | 2 | 4 | 4 | 3 | 2 |  |  | 2 |  |  |
| MWH06.C2.E1090 |  | MSFT Delivery -UPM - ROJ - COLO2- Cell-3 (11/25/2020) | milestone | 0d | 2020-12-16 A | 2020-12-16 A | MWH-06-02-ROJ-S, MWH06-2527, MWH06-2539, MWH06-9894 | 100% | 2020-12-21 | 2020-12-21 | start on or after 2020-12-16 | 566 | 2 | 4 | 3 | 3 | 2 |  |  | 2 |  |  |
|  | 3 | **COLO-3** |  |  | 2020-12-18 | 2021-01-04 |  |  |  |  |  |  |  |  |  |  |  |  |  |  |  |  |
| MWH06.C3.E1030 |  | MSFT Delivery -UPM - ROJ - COLO3- Cell-2 (11/23/2020) | milestone | 0d | 2020-12-18 A | 2020-12-18 A | MWH-06-03-ROJ-S, MWH06-2527, MWH06-2539, MWH06-9896 | 100% | 2021-01-07 | 2021-01-07 | start on or after 2020-12-11 | 572 | 3 | 4 | 2 | 3 | 2 |  |  | 2 |  |  |
| MWH06.C3.E1010 |  | MSFT Delivery -UPM - ROJ - COLO3- Cell-1 (11/23/2020) | milestone | 0d | 2020-12-29 A | 2020-12-29 A | MWH-06-03-ROJ-S, MWH06-2527, MWH06-2539, MWH06-9895 | 100% |  |  | start on or after 2020-12-11 | 570 | 3 | 4 | 1 | 3 | 2 |  |  | 2 |  |  |
| MWH06.C3.E1090 |  | MSFTDelivery -UPM - ROJ - COLO3- Cell-3 (11/23/2020) | milestone | 0d | 2021-01-04 A | 2021-01-04 A | MWH-06-03-ROJ-S, MWH06-2539, MWH06-9898 | 100% | 2021-01-11 | 2021-01-11 | start on or after 2021-01-04 | 571 | 3 | 4 | 3 | 3 | 2 |  |  | 2 |  |  |
| MWH06.C3.E1110 |  | MSFT Delivery -UPM - ROJ - COLO3- Cell-4 (11/23/2020) | milestone | 0d | 2021-01-04 A | 2021-01-04 A | MWH-06-03-ROJ-S, MWH06-2539, MWH06-9897 | 100% | 2021-01-11 | 2021-01-11 | start on or after 2021-01-04 | 573 | 3 | 4 | 4 | 3 | 2 |  |  | 2 |  |  |
|  | 4 | **COLO-4** |  |  | 2020-12-17 | 2021-01-04 |  |  |  |  |  |  |  |  |  |  |  |  |  |  |  |  |
| MWH06.C4.E1020 |  | MSFT Delivery -UPM - ROJ - COLO-4 Cell- 2 (12/7/2020) | milestone | 0d | 2020-12-17 A | 2020-12-17 A | MWH-06-04-ROJ-S, MWH06-2527, MWH06-2539, MWH06-9900 | 100% | 2021-01-12 | 2021-01-12 | start on or after 2020-12-18 | 577 | 4 | 4 | 2 | 3 | 2 |  |  | 2 |  |  |
| MWH06.C4.E1010 |  | MSFT Delivery -UPM - ROJ - COLO-4 Cell- 1 (12/7/2020) | milestone | 0d | 2020-12-30 A | 2020-12-30 A | MWH-06-04-ROJ-S, MWH06-2527, MWH06-2539, MWH06-9899 | 100% | 2021-01-09 | 2021-01-09 | start on or after 2020-12-29 | 575 | 4 | 4 | 1 | 3 | 2 |  |  | 2 |  |  |
| MWH06.C4.E1090 |  | MSFT Delivery -UPM - ROJ - COLO-4 Cell- 3 (12/18/2020) | milestone | 0d | 2021-01-04 A | 2021-01-04 A | MWH-06-04-ROJ-S, MWH06-2527, MWH06-2539, MWH06-9902 | 100% | 2021-01-11 | 2021-01-11 | start on or after 2021-01-04 | 576 | 4 | 4 | 3 | 3 | 2 |  |  | 2 |  |  |
| MWH06.C4.E1110 |  | MSFT Delivery -UPM - ROJ - COLO-4 Cell- 4 (12/18/2020) | milestone | 0d | 2021-01-04 A | 2021-01-04 A | MWH-06-04-ROJ-S, MWH06-2527, MWH06-2539, MWH06-9901 | 100% | 2021-01-11 | 2021-01-11 | start on or after 2021-01-04 | 578 | 4 | 4 | 4 | 3 | 2 |  |  | 2 |  |  |
|  | 4 | **Fluid Cooler** |  |  | 2020-07-07 | 2020-12-20 |  |  |  |  |  |  |  |  |  |  |  |  |  |  |  |  |
|  | 1 | **COLO-1** |  |  | 2020-07-07 | 2020-07-28 |  |  |  |  |  |  |  |  |  |  |  |  |  |  |  |  |
| MWH06.C1.E1130 |  | MSFT Delivery -Fluid Cooler - ROJ COLO -1 Cell- 1 | milestone | 0d | 2020-07-07 A | 2020-07-07 A | MWH-06-01-ROJ-S, MWH06-2527 | 100% | 2020-09-19 | 2020-09-19 | start on or after 2020-09-19 | 581 | 1 | 51 | 1 | 3 | 2 |  |  | 1C | 6 | CP-1 |
| MWH06.C1.E1170 |  | MSFT Delivery -Fluid Cooler - ROJ COLO -1 Cell- 2 | milestone | 0d | 2020-07-14 A | 2020-07-14 A | MWH-06-01-ROJ-S, MWH06-2527 | 100% | 2020-09-26 | 2020-09-26 | start on or after 2020-09-26 | 583 | 1 | 51 | 2 | 3 | 2 |  |  | 1C |  |  |
| MWH06.C1.E1270 |  | MSFT Delivery -Fluid Cooler - ROJ COLO -1 Cell- 3 | milestone | 0d | 2020-07-21 A | 2020-07-21 A | MWH-06-01-ROJ-S, MWH06-2527 | 100% | 2020-10-15 | 2020-10-15 | start on or after 2020-10-15 | 582 | 1 | 51 | 3 | 3 | 2 |  |  | 1C |  |  |
| MWH06.C1.E1250 |  | MSFT Delivery -Fluid Cooler - ROJ COLO -1 Cell- 4 | milestone | 0d | 2020-07-28 A | 2020-07-28 A | MWH-06-01-ROJ-S, MWH06-2527 | 100% | 2020-10-12 | 2020-10-12 | start on or after 2020-10-12 | 584 | 1 | 51 | 4 | 3 | 2 |  |  | 1C |  |  |

| ID | WBS | Activity | Type | Duration | Start | Finish | Predecessors | Complete | Planned start | Planned finish | Constraint | MSP Activity ID | COLO | TRADE | MSFT-Funding Releases | CELL | WBS | Equipment Deliveries |
| --- | --- | --- | --- | --- | --- | --- | --- | --- | --- | --- | --- | --- | --- | --- | --- | --- | --- | --- |
|  | 2 | **COLO-2** |  |  | 2020-09-23 | 2020-11-30 |  |  |  |  |  |  |  |  |  |  |  |  |
| MWH06.C2.E1150 |  | MSFT Delivery -Fluid Cooler - ROJ COLO -2 Cell-1 | milestone | 0d | 2020-09-23 A | 2020-09-23 A | MWH-06-02-ROJ-S, MWH06-2527 | 100% | 2020-11-02 | 2020-11-02 | start on or after 2020-09-23 | 586 | 2 | 51 | 2 | 1 | 3 | 2 |
| MWH06.C2.E1230 |  | MSFT Delivery -Fluid Cooler - ROJ COLO -2 Cell-3 | milestone | 0d | 2020-09-24 A | 2020-09-24 A | MWH-06-02-ROJ-S, MWH06-2527 | 100% | 2020-11-02 | 2020-11-02 | start on or after 2020-09-24 | 587 | 2 | 51 | 2 | 3 | 3 | 2 |
| MWH06.C2.E1250 |  | MSFT Delivery -Fluid Cooler - ROJ COLO -2 Cell-2 | milestone | 0d | 2020-11-30 A | 2020-11-30 A | MWH-06-02-ROJ-S, MWH06-2527 | 100% | 2020-11-02 | 2020-11-02 | start on or after 2020-09-30 | 588 | 2 | 51 | 2 | 2 | 3 | 2 |
|  | 3 | **COLO-3** |  |  | 2020-11-11 | 2020-11-23 |  |  |  |  |  |  |  |  |  |  |  |  |
| MWH06.C3.E1190 |  | MSFT Delivery -Fluid Cooler - ROJ COLO -3 Cell-1 | milestone | 0d | 2020-11-11 A | 2020-11-11 A | MWH-06-03-ROJ-S, MWH06-2527 | 100% | 2020-11-30 | 2020-11-30 | start on or after 2020-11-11 | 590 | 3 | 51 | 2 | 1 | 3 | 2 |
| MWH06.C3.E1280 |  | MSFT Delivery -Fluid Cooler - ROJ COLO -3 Cell-4 | milestone | 0d | 2020-11-18 A | 2020-11-18 A | MWH-06-03-ROJ-S, MWH06-2527 | 100% | 2020-11-30 | 2020-11-30 | start on or after 2020-11-25 | 592 | 3 | 51 | 2 | 4 | 3 | 2 |
| MWH06.C3.E1210 |  | MSFT Delivery -Fluid Cooler - ROJ COLO -3 Cell-2 | milestone | 0d | 2020-11-23 A | 2020-11-23 A | MWH-06-03-ROJ-S, MWH06-2527 | 100% | 2020-11-30 | 2020-11-30 | start on or after 2020-11-18 | 591 | 3 | 51 | 2 | 2 | 3 | 2 |
|  | 4 | **COLO-4** |  |  | 2020-12-12 | 2020-12-20 |  |  |  |  |  |  |  |  |  |  |  |  |
| MWH06.C4.E1150 |  | MSFT Delivery -Fluid Cooler - ROJ COLO -4 Cell-1 | milestone | 0d | 2020-12-12 A | 2020-12-12 A | MWH-06-04-ROJ-S, MWH06-2527 | 100% | 2020-12-21 | 2020-12-21 | start on or after 2020-12-09 | 594 | 4 | 51 | 2 | 1 | 3 | 2 |
| MWH06.C4.E1170 |  | MSFT Delivery -Fluid Cooler - ROJ COLO -4 Cell-2 | milestone | 0d | 2020-12-17 A | 2020-12-17 A | MWH-06-04-ROJ-S, MWH06-2527 | 100% | 2020-12-21 | 2020-12-21 | start on or after 2020-12-16 | 596 | 4 | 51 | 2 | 2 | 3 | 2 |
| MWH06.C4.E1250 |  | MSFT Delivery -Fluid Cooler - ROJ COLO -4 Cell-3 | milestone | 0d | 2020-12-17 A | 2020-12-17 A | MWH-06-04-ROJ-S, MWH06-2527 | 100% | 2020-12-23 | 2020-12-23 | start on or after 2020-12-23 | 595 | 4 | 51 | 2 | 3 | 3 | 2 |
| MWH06.C4.E1270 |  | MSFT Delivery -Fluid Cooler - ROJ COLO -4 Cell-4 | milestone | 0d | 2020-12-20 A | 2020-12-20 A | MWH-06-04-ROJ-S, MWH06-2527 | 100% | 2021-01-02 | 2021-01-02 | start on or after 2020-12-21 | 597 | 4 | 51 | 2 | 4 | 3 | 2 |
|  | 5 | **Generator** |  |  | 2020-10-15 | 2021-04-16 |  |  |  |  |  |  |  |  |  |  |  |  |
|  | 1 | **COLO-1** |  |  | 2020-10-15 | 2020-11-13 |  |  |  |  |  |  |  |  |  |  |  |  |
| MWH06.C1.E1050 |  | MSFT Delivery -Generator ROJ COLO 1- Cell-1 | milestone | 0d | 2020-10-15 A | 2020-10-15 A | MWH-06-01-ROJ-S, MWH06-2527, MWH06-2537, MWH06-9955 | 100% | 2020-11-02 | 2020-11-02 | start on or after 2020-10-01 | 600 | 1 | 4 | 1C | 1 | 3 | 2 |
| MWH06.C1.E1210 |  | MSFT Delivery -Generator ROJ COLO 1- Cell-4 | milestone | 0d | 2020-10-22 A | 2020-10-22 A | MWH-06-01-ROJ-S, MWH06-2527, MWH06-2537, MWH06-9957 | 100% | 2020-11-06 | 2020-11-06 | start on or after 2020-10-22 | 603 | 1 | 4 | 1C | 4 | 3 | 2 |
| MWH06.C1.E1070 |  | MSFT Delivery -Generator ROJ COLO 1- Cell-2 | milestone | 0d | 2020-11-02 A | 2020-11-02 A | MWH-06-01-ROJ-S, MWH06-2527, MWH06-2537, MWH06-9956 | 100% |  |  | start on or after 2020-10-09 | 602 | 1 | 4 | 1C | 2 | 3 | 2 |
| MWH06.C1.E1190 |  | MSFT Delivery -Generator ROJ COLO 1- Cell-3 | milestone | 0d | 2020-11-13 A | 2020-11-13 A | MWH-06-01-ROJ-S, MWH06-2527, MWH06-2537, MWH06-9958 | 100% | 2020-11-16 | 2020-11-16 | start on or after 2020-11-13 | 601 | 1 | 4 | 1C | 3 | 3 | 2 |
|  | 2 | **COLO-2** |  |  | 2020-12-29 | 2021-01-22 |  |  |  |  |  |  |  |  |  |  |  |  |
| MWH06.C2.E1040 |  | MSFT Delivery -Generator ROJ COLO 2- Cell - 1 | milestone | 0d | 2020-12-29 A | 2020-12-29 A | MWH-06-02-ROJ-S, MWH06-9905, MWH06-2527, MWH06-2538 | 100% | 2021-01-09 | 2021-01-09 | start on or after 2021-01-09 | 605 | 2 | 4 | 2 | 1 | 3 | 2 |
| MWH06.C2.E1070 |  | MSFT Delivery -Generator ROJ COLO 2- Cell - 2 | milestone | 0d | 2021-01-09 A | 2021-01-09 A | MWH-06-02-ROJ-S, MWH06-9908, MWH06-2527, MWH06-2538 | 100% | 2021-01-19 | 2021-01-19 | start on or after 2021-01-08 | 607 | 2 | 4 | 2 | 2 | 3 | 2 |
| MWH06.C2.E1170 |  | MSFT Delivery -Generator ROJ COLO 2- Cell - 3 | milestone | 0d | 2021-01-19 A | 2021-01-19 A | MWH-06-02-ROJ-S, MWH06-9910, MWH06-2527, MWH06-2538 | 100% | 2021-02-01 | 2021-02-01 | start on or after 2021-01-19 | 606 | 2 | 4 | 2 | 3 | 3 | 2 |
| MWH06.C2.E1190 |  | MSFT Delivery -Generator ROJ COLO 2- Cell - 4 | milestone | 0d | 2021-01-22 A | 2021-01-22 A | MWH-06-02-ROJ-S, MWH06-9909, MWH06-2527, MWH06-2538 | 100% | 2021-02-01 | 2021-02-01 | start on or after 2021-01-22 | 608 | 2 | 4 | 2 | 4 | 3 | 2 |

| ID | WBS | Activity | Type | Duration | Start | Finish | Predecessors | Complete | Planned start | Planned finish | Constraint | MSP Activity ID | COLO | TRADE | MSFT-Funding Releases | CELL | WBS | Equipment Deliveries | HOT ITEMS | MWH06- TRADES | CRITICAL PATH-3 |
| --- | --- | --- | --- | --- | --- | --- | --- | --- | --- | --- | --- | --- | --- | --- | --- | --- | --- | --- | --- | --- | --- |
|  | 3 | **COLO-3** |  |  | 2021-02-19 | 2021-03-18 |  |  |  |  |  |  |  |  |  |  |  |  |  |  |  |
| MWH06.C3.E1070 |  | MSFT Delivery -Generator ROJ COLO 3- Cell - 2 | milestone | 0d | 2021-02-19 A | 2021-02-19 A | MWH-06-03-ROJ-S, MWH06-2527, MWH06-2538, MWH06-9948 | 100% | 2021-03-01 | 2021-03-01 | start on or after 2021-02-26 | 612 | 3 | 4 | 2 | 2 | 3 | 2 |  |  |  |
| MWH06.C3.E1250 |  | MSFT Delivery -Generator ROJ COLO 3- Cell - 4 | milestone | 0d | 2021-02-26 A | 2021-02-26 A | MWH-06-03-ROJ-S, MWH06-2527, MWH06-2538, MWH06-9949 | 100% | 2021-03-01 | 2021-03-01 | start on or after 2021-02-26 | 613 | 3 | 4 | 2 | 4 | 3 | 2 |  |  |  |
| MWH06.C3.E1230 |  | MSFT Delivery -Generator ROJ COLO 3- Cell - 3 | milestone | 0d | 2021-03-05 A | 2021-03-05 A | MWH-06-03-ROJ-S, MWH06-2527, MWH06-2538, MWH06-9950 | 100% | 2021-03-22 | 2021-03-22 | start on or after 2021-03-05 | 611 | 3 | 4 | 2 | 3 | 3 | 2 |  |  |  |
| MWH06.C3.E1050 |  | MSFT Delivery -Generator ROJ COLO 3- Cell - 1 | milestone | 0d | 2021-03-18 A | 2021-03-18 A | MWH-06-03-ROJ-S, MWH06-10369, MWH06-2527, MWH06-2538, MWH06-9947 | 100% | 2021-03-01 | 2021-03-01 | start on or after 2021-02-12 | 610 | 3 | 4 | 2 | 1 | 3 | 2 |  |  |  |
|  | 4 | **COLO-4** |  |  | 2021-03-12 | 2021-04-16 |  |  |  |  |  |  |  |  |  |  |  |  |  |  |  |
| MWH06.C4.E1050 |  | MSFT Delivery -Generator ROJ COLO 4- Cell - 2 | milestone | 0d | 2021-03-12 A | 2021-03-12 A | MWH-06-04-ROJ-S, MWH06-2527, MWH06-2538, MWH06-9952 | 100% | 2021-03-22 | 2021-03-22 | start on or after 2021-03-12 | 616 | 4 | 4 | 2 | 2 | 3 | 2 |  |  |  |
| MWH06.C4.E1210 |  | MSFT Delivery -Generator ROJ COLO 4- Cell - 4 | milestone | 0d | 2021-03-26 A | 2021-03-26 A | MWH-06-04-ROJ-S, MWH06-2527, MWH06-2538, MWH06-9953 | 100% | 2021-03-31 | 2021-03-31 | start on or after 2021-03-26 | 617 | 4 | 4 | 2 | 4 | 3 | 2 |  |  |  |
| MWH06.C4.E1190 |  | MSFT Delivery -Generator ROJ COLO 4- Cell - 3 | milestone | 0d | 2021-04-02 A | 2021-04-02 A | MWH-06-04-ROJ-S, MWH06-2527, MWH06-2538, MWH06-9954 | 100% | 2021-04-26 | 2021-04-26 | start on or after 2021-04-02 | 615 | 4 | 4 | 2 | 3 | 3 | 2 |  |  |  |
| MWH06.C4.E1070 |  | MSFT Delivery -Generator ROJ COLO 4- Cell - 1 | milestone | 0d | 2021-04-16 A | 2021-04-16 A | MWH-06-04-ROJ-S, MWH06-2527, MWH06-2538, MWH06-9951 | 100% | 2021-04-26 | 2021-04-26 | start on or after 2021-04-09 | 618 | 4 | 4 | 2 | 1 | 3 | 2 |  |  |  |
|  | 6 | **PDU** |  |  | 2020-11-16 | 2021-04-30 |  |  |  |  |  |  |  |  |  |  |  |  |  |  |  |
|  | 1 | **COLO-1** |  |  | 2020-11-16 | 2020-12-05 |  |  |  |  |  |  |  |  |  |  |  |  |  |  |  |
| MWH06.C1.E1350 |  | MSFT Delivery -PDU ROJ COLO-1 Cell-1 | milestone | 0d | 2020-11-16 A | 2020-11-16 A | MWH-06-01-ROJ-S, MWH06-2527, MWH06-2535 | 100% | 2020-11-30 | 2020-11-30 | start on or after 2020-11-16 | 621 | 1 | 4 | 1C | 1 | 5 | 2 | 4 | 26 | CP-2 |
| MWH06.C1.E1370 |  | MSFT Delivery -PDU ROJ COLO-1 Cell-2 | milestone | 0d | 2020-11-16 A | 2020-11-16 A | MWH-06-01-ROJ-S, MWH06-2527, MWH06-2535 | 100% | 2020-11-30 | 2020-11-30 | start on or after 2020-11-16 | 623 | 1 | 4 | 1C | 2 | 5 | 2 | 4 | 26 | CP-2 |
| MWH06.C1.E1440 |  | MSFT Delivery -PDU ROJ COLO-1 Cell-3 | milestone | 0d | 2020-11-20 A | 2020-11-20 A | MWH-06-01-ROJ-S, MWH06-2527, MWH06-2535 | 100% | 2020-11-30 | 2020-11-30 | start on or after 2020-11-27 | 622 | 1 | 4 | 1C | 3 | 5 | 2 | 4 | 26 | CP-2 |
| MWH06.C1.E1460 |  | MSFT Delivery -PDU ROJ COLO-1 Cell-4 | milestone | 0d | 2020-12-05 A | 2020-12-05 A | MWH-06-01-ROJ-S, MWH06-2527, MWH06-2535 | 100% | 2020-12-21 | 2020-12-21 | start on or after 2020-12-04 | 624 | 1 | 4 | 1C | 4 | 5 | 2 | 4 | 26 | CP-2 |
|  | 2 | **COLO-2** |  |  | 2021-01-11 | 2021-01-16 |  |  |  |  |  |  |  |  |  |  |  |  |  |  |  |
| MWH06.C2.E1380 |  | MSFT Delivery -PDU ROJ COLO-2 Cell-1 | milestone | 0d | 2021-01-11 A | 2021-01-11 A | MWH-06-02-ROJ-S, MWH06-2527, MWH06-2535 | 100% |  |  | start on or after 2021-01-06 | 626 | 2 | 4 | 2 | 1 | 5 | 2 |  | 26 |  |
| MWH06.C2.E1400 |  | MSFT Delivery -PDU ROJ COLO-2 Cell-2 | milestone | 0d | 2021-01-11 A | 2021-01-11 A | MWH-06-02-ROJ-S, MWH06-2527, MWH06-2535 | 100% |  |  | start on or after 2021-01-08 | 628 | 2 | 4 | 2 | 2 | 5 | 2 |  | 26 |  |
| MWH06.C2.E1430 |  | MSFT Delivery -PDU ROJ COLO-2 Cell-3 | milestone | 0d | 2021-01-14 A | 2021-01-14 A | MWH-06-02-ROJ-S, MWH06-2527, MWH06-2535 | 100% | 2021-01-11 | 2021-01-11 | start on or after 2021-01-10 | 627 | 2 | 4 | 2 | 3 | 5 | 2 |  | 26 |  |
| MWH06.C2.E1450 |  | MSFT Delivery -PDU ROJ COLO-2 Cell-4 | milestone | 0d | 2021-01-16 A | 2021-01-16 A | MWH-06-02-ROJ-S, MWH06-2527, MWH06-2535 | 100% | 2021-01-15 | 2021-01-15 | start on or after 2021-01-15 | 629 | 2 | 4 | 2 | 4 | 5 | 2 |  | 26 |  |
|  | 3 | **COLO-3** |  |  | 2021-03-02 | 2021-03-19 |  |  |  |  |  |  |  |  |  |  |  |  |  |  |  |
| MWH06.C3.E1390 |  | MSFT Delivery -PDU ROJ COLO-3 Cell-1 | milestone | 0d | 2021-03-02 A | 2021-03-02 A | MWH-06-03-ROJ-S, MWH06-2527, MWH06-2535 | 100% | 2021-03-22 | 2021-03-22 | start on or after 2021-03-12 | 631 | 3 | 4 | 2 | 1 | 5 | 2 |  | 26 |  |
| MWH06.C3.E1410 |  | MSFT Delivery -PDU ROJ COLO-3 Cell-2 | milestone | 0d | 2021-03-04 A | 2021-03-04 A | MWH-06-03-ROJ-S, MWH06-2527, MWH06-2535 | 100% | 2021-03-22 | 2021-03-22 | start on or after 2021-03-12 | 633 | 3 | 4 | 2 | 2 | 5 | 2 |  | 26 |  |
| MWH06.C3.E1430 |  | MSFT Delivery -PDU ROJ COLO-3 Cell-3 | milestone | 0d | 2021-03-15 A | 2021-03-15 A | MWH-06-03-ROJ-S, MWH06-2527, MWH06-2535 | 100% | 2021-04-02 | 2021-04-02 | start on or after 2021-04-02 | 632 | 3 | 4 | 2 | 3 | 5 | 2 |  | 26 |  |
| MWH06.C3.E1450 |  | MSFT Delivery -PDU ROJ COLO-3 Cell-4 | milestone | 0d | 2021-03-19 A | 2021-03-19 A | MWH-06-03-ROJ-S, MWH06-2527, MWH06-2535 | 100% | 2021-04-02 | 2021-04-02 | start on or after 2021-04-02 | 634 | 3 | 4 | 2 | 4 | 5 | 2 |  | 26 |  |

| ID | WBS | Activity | Type | Duration | Start | Finish | Predecessors | Complete | Planned start | Planned finish | Constraint | Calendar | MSP Activity ID | COLO | TRADE | MSFT-Funding Releases | CELL | WBS | Equipment Deliveries | MWH06- TRADES | VECA % Complete | HOT ITEMS | Critical Path-2 |
| --- | --- | --- | --- | --- | --- | --- | --- | --- | --- | --- | --- | --- | --- | --- | --- | --- | --- | --- | --- | --- | --- | --- | --- |
|  | 4 | **COLO-4** |  |  | 2021-03-29 | 2021-04-30 |  |  |  |  |  |  |  |  |  |  |  |  |  |  |  |  |  |
| MWH06.C4.E1410 |  | MSFT Delivery -PDU ROJ COLO-4 Cell-1 | milestone | 0d | 2021-03-29 A | 2021-03-29 A | MWH-06-04-ROJ-S, MWH06-2527, MWH06-2535 | 100% | 2021-03-31 | 2021-03-31 | start on or after 2021-03-29 |  | 636 | 4 | 4 | 2 | 1 | 5 | 2 | 26 |  |  |  |
| MWH06.C4.E1430 |  | MSFT Delivery -PDU ROJ COLO-4 Cell-2 | milestone | 0d | 2021-04-12 A | 2021-04-12 A | MWH-06-04-ROJ-S, MWH06-2527, MWH06-2535 | 100% | 2021-04-30 | 2021-04-30 | start on or after 2021-04-19 |  | 638 | 4 | 4 | 2 | 2 | 5 | 2 | 26 |  |  |  |
| MWH06.C4.E1450 |  | MSFT Delivery -PDU ROJ COLO-4 Cell-3 | milestone | 0d | 2021-04-26 A | 2021-04-26 A | MWH-06-04-ROJ-S, MWH06-2527, MWH06-2535 | 100% | 2021-04-30 | 2021-04-30 | start on or after 2021-04-23 |  | 637 | 4 | 4 | 2 | 3 | 5 | 2 | 26 |  |  |  |
| MWH06.C4.E1470 |  | MSFT Delivery -PDU ROJ COLO-4 Cell-4 | milestone | 0d | 2021-04-30 A | 2021-04-30 A | MWH-06-04-ROJ-S, MWH06-2527, MWH06-2535 | 100% |  |  | start on or after 2021-04-30 |  | 639 | 4 | 4 | 2 | 4 | 5 | 2 | 26 |  |  |  |
|  | 7 | **Other Electrical Equipment** |  |  | 2020-06-27 | 2020-12-11 |  |  |  |  |  |  |  |  |  |  |  |  |  |  |  |  |  |
| MWH06-2511 |  | MSFT Delivery -ATS- ROJ | milestone | 0d | 2020-06-27 A | 2020-06-27 A | MWH06-2527 | 100% | 2020-06-29 | 2020-06-29 | start on or after 2020-06-27 |  | 643 | S |  |  | All |  | 2 |  |  |  |  |
| MWH06-2513 |  | MSFT Delivery -TCP - ROJ | milestone | 0d | 2020-08-17 A | 2020-08-17 A | MWH06-2527 | 100% | 2020-10-28 | 2020-10-28 | start on or after 2020-10-28 |  | 645 | S |  |  | All |  | 2 |  |  |  |  |
| MWH06-2514 |  | MSFT Delivery -UPS- ROJ | milestone | 0d | 2020-10-01 A | 2020-10-01 A | MWH06-2527 | 100% | 2020-11-02 | 2020-11-02 | start on or after 2020-10-01 |  | 646 | S |  |  | All |  | 2 |  |  |  |  |
| MWH06-2510 |  | MSFTDelivery -URS - ROJ | milestone | 0d | 2020-11-02 A | 2020-11-02 A | MWH06-2527 | 100% |  |  | start on or after 2020-10-27 |  | 642 | S |  |  | All |  | 2 |  |  |  |  |
| MWH06-2512 |  | MSFT Delivery -MSB - ROJ | milestone | 0d | 2020-11-02 A | 2020-11-02 A | MWH06-2527 | 100% |  |  | start on or after 2020-10-12 |  | 644 | S |  |  | All |  | 2 |  |  |  |  |
| MWH06-2541 |  | MSFT Delivery -ADMIN- GEN- ROJ | milestone | 0d | 2020-11-02 A | 2020-11-02 A | MWH06-2536 | 100% |  |  | start on or after 2020-08-23 |  | 643 | S |  |  | ADMIN |  | 2 |  |  |  |  |
| MWH06-2621 |  | MSFT Delivery - ADMIN - UPM - ROJ | milestone | 0d | 2020-11-24 A | 2020-11-24 A | MWH06-2527 | 100% | 2020-11-30 | 2020-11-30 | start on or after 2020-11-24 | 7-8s w/Holidays Clayco |  | S |  |  | ADMIN |  |  |  |  |  |  |
| MWH06-2509 |  | MSFT Delivery -UMS - ROJ | milestone | 0d | 2020-12-11 A | 2020-12-11 A | MWH06-2527, MWH06-9903 | 100% | 2020-12-21 | 2020-12-21 | start on or after 2020-12-07 |  | 641 | S |  |  | All |  | 2 |  |  |  |  |
|  | 11 | **Electrical Procurement** |  |  | 2020-04-07 | 2020-11-06 |  |  |  |  |  |  |  |  |  |  |  |  |  |  |  |  |  |
|  | 5 | **SITE** |  |  | 2020-04-14 | 2020-11-06 |  |  |  |  |  |  |  |  |  |  |  |  |  |  |  |  |  |
|  | 4 | **DRB#1** |  |  | 2020-07-21 | 2020-11-06 |  |  |  |  |  |  |  |  |  |  |  |  |  |  |  |  |  |
| MWH06-2134 |  | DRB#1 BIM Modeling & Coordination DRB#1 JAZ to UMS/URS & UPM to UMS |  | 14d | 2020-07-21 A | 2020-08-03 A | MWH06-2140.2 | 100% | 2020-08-10 | 2020-08-23 | start on or after 2020-07-21 | 7-8s w/Holidays Clayco | 651 | S | 4 |  | All |  |  |  | 100 | 1 | 1 |
| MWH06-2189 |  | JAZ Riser Support DRB#1 Procurement/ Jaz Foundations/Construction |  | 70d | 2020-07-21 A | 2020-11-06 A | MWH06-2140.2 | 100% | 2020-08-10 | 2020-10-18 |  | 7-8s wo/Holidays Clayco | 655 | S |  |  | All |  |  |  |  | 1 |  |
| MWH06-2190 |  | UPM to UMS Vaults Procurement DRB#1 |  | 35d | 2020-08-03 A | 2020-08-24 A | MWH06-2140.2, MWH06-2134 | 100% | 2020-09-08 | 2020-10-12 |  | 7-8s w/Holidays Clayco | 656 | S | 4 |  | All |  |  |  | 100 | 2 |  |
| MWH06-2132 |  | MV Wire Procurement DRB#1 JAZ to UMS/URS & UPM to UMS |  | 84d | 2020-08-04 A | 2020-10-26 A | MWH06-2134 | 100% | 2020-08-12 | 2020-11-03 |  | 7-8s w/Holidays Clayco | 653 | S |  |  | All |  |  |  |  | 1 |  |
| MWH06-2135 |  | Site- Neher Mcgrath Study DRB#1 JAZ to UMS/URS & UPM to UMS |  | 14d | 2020-08-04 A | 2020-08-26 A | MWH06-2134 | 100% | 2020-08-11 | 2020-08-24 |  | 7-8s w/Holidays Clayco | 652 | S |  |  | All |  |  |  |  | 1 |  |
| MWH06-2131 |  | MV Ductbanks Procurement DRB#1 JAZ to UMS/URS & UPM to UMS |  | 7d | 2020-08-31 A | 2020-09-06 A | MWH06-2134, MWH06-2135 | 100% | 2020-09-14 | 2020-09-20 |  | 7-8s w/Holidays Clayco | 650 | S |  |  | All |  |  |  |  | 1 |  |
| MWH06-2133 |  | UMS Vault Procurement DRB#1 |  | 41d | 2020-09-26 A | 2020-10-29 A | MWH06-2004 SS-7d, MWH06.D1.S1040 | 100% | 2020-09-28 | 2020-11-07 |  | 7-8s w/Holidays Clayco | 654 | S | 4 |  | All |  |  |  |  | 2 | 1 |

| ID | WBS | Activity | Type | Duration | Start | Finish | Predecessors | Complete | Planned start | Planned finish | Constraint | Calendar | MSP Activity ID | COLO | Critical Path | HOT ITEMS | MSFT-Funding Releases | STEEL ERECTION CRITICAL | CELL | TRADE | VECA % Complete |
| --- | --- | --- | --- | --- | --- | --- | --- | --- | --- | --- | --- | --- | --- | --- | --- | --- | --- | --- | --- | --- | --- |
|  | 1 | **Phase 1** |  |  | 2020-04-14 | 2020-10-29 |  |  |  |  |  |  |  |  |  |  |  |  |  |  |  |
| MWH06-1997 |  | Off-Site BIM Modeling & Coordination |  | 28d | 2020-04-14 A | 2020-05-05 A | MWH06-2002 FS+7d | 100% | 2020-04-27 | 2020-05-24 |  | 7-8s w/Holidays Clayco | 661 | S | 4 | 1 | 1B | 2 | All |  |  |
| MWH06-1994 |  | Telecom DuctBank / Vaults Procurement |  | 5d | 2020-05-06 A | 2020-06-20 A | MWH06-2002, MWH06-1997 | 100% | 2020-05-14 | 2020-05-18 |  | 7-8s w/Holidays Clayco | 660 | S |  |  | 1B | 3.1 | All |  |  |
| MWH06-1997.1 |  | Neher Mcgrath Study |  | 35d | 2020-06-22 A | 2020-07-24 A | MWH06-1999 FS+3d | 100% | 2020-07-02 | 2020-08-06 |  | 7-8s w/Holidays Clayco | 659 | S | 4 |  | 1B | 2 | All |  |  |
| MWH06-1996 |  | MV Wire Procurement |  | 84d | 2020-07-21 A | 2020-10-12 A | MWH06-2002, MWH06-2134 SS | 100% | 2020-08-12 | 2020-11-03 |  | 7-8s w/Holidays Clayco | 662 | S |  |  | 1C |  | All |  |  |
| MWH06-1993 |  | MV Ductbanks Procurement |  | 9d | 2020-07-27 A | 2020-08-03 A | MWH06-1997.1 | 100% | 2020-08-12 | 2020-08-20 |  | 7-8s w/Holidays Clayco | 658 | S |  |  | 1B |  | All |  |  |
| MWH06-2004 |  | URS Vault Procurement |  | 45d | 2020-09-26 A | 2020-10-29 A | MWH06-1997, MWH06.D1.S1040 | 100% | 2020-09-28 | 2020-11-11 |  | 7-8s w/Holidays Clayco | 663 | S |  | 1 | 1B | 3.1 | All | 4 |  |
|  | 3 | **Temp Power** |  |  | 2020-06-15 | 2020-08-31 |  |  |  |  |  |  |  |  |  |  |  |  |  |  |  |
| MWH06-1995 |  | Site Temp Power Procurement & Infrastructure |  | 50d | 2020-06-15 A | 2020-08-31 A | MWH06-2003 | 100% | 2020-06-29 | 2020-08-31 |  | MWH 06 - 60/60/50_p | 665 | S |  |  | 1B |  | All | 1 |  |
|  | 1 | **Admin/ COLO 1** |  |  | 2020-04-07 | 2020-10-19 |  |  |  |  |  |  |  |  |  |  |  |  |  |  |  |
| MWH06-1998 |  | Underground Grounding Procurement |  | 21d | 2020-04-07 A | 2020-04-28 A | MWH06-2002 FS+7d | 100% | 2020-04-27 | 2020-05-17 |  | 7-8s w/Holidays Clayco | 667 | S |  |  | 1B |  | All | 4 | 100 |
| MWH06-2000 |  | Electrical Long Lead Equipment Procurement (Cablebus, Panel Boards) |  | 56d | 2020-04-27 A | 2020-08-31 A | MWH06-2002 | 100% | 2020-04-27 | 2020-06-21 |  | 7-8s w/Holidays Clayco | 668 | S |  |  | 1C |  | All |  |  |
| MWH06-1999 |  | BIM Modeling (Under ground) |  | 35d | 2020-05-05 A | 2020-06-08 A | MWH06-1997 | 100% |  |  |  | 7-8s w/Holidays Clayco | 515 | S | 4 |  | 1B | 2 | All |  |  |
| MWH06-2008 |  | BIM Modeling (Above ground) |  | 60d | 2020-06-15 A | 2020-09-26 A | MWH06-2003, MWH06-1999 | 100% | 2020-08-02 | 2020-09-30 |  | 7-8s w/Holidays Clayco | 669 | S |  |  | 1C |  | All |  |  |
| MWH06-2109 |  | Admin/COLO-1 BIM Signoff | milestone | 0d | 2020-09-26 A | 2020-09-26 A | MWH06-2008 FF | 100% | 2020-10-06 | 2020-10-06 | as late as possible | 7-8s w/Holidays Clayco | 670 | S |  |  | 1C |  | All |  |  |
|  | 1 | **Electrical OFCI Procurement** |  |  | 2020-07-01 | 2020-10-19 |  |  |  |  |  |  |  |  |  |  |  |  |  |  |  |
| MWH06-2105 |  | Design / Lead Time for Electrical/Telecom (OFCI Telecom BOM Materials) |  | 90d | 2020-07-01 A | 2020-10-12 A | MWH06-2003 | 100% | 2020-08-10 | 2020-11-07 |  | 7-8s wo/Holidays Clayco | 672 | S |  |  |  |  | All |  |  |
| MWH06-2106 |  | Design / Lead Time for Busway (OFCI Starline BOM Materials) |  | 50d | 2020-09-21 A | 2020-10-19 A | MWH06-2008, MWH06-2003 | 100% | 2020-11-26 | 2021-01-14 |  | 7-8s wo/Holidays Clayco | 673 | S |  |  |  |  | All |  |  |
|  | 14 | **Mechanical Procurement** |  |  | 2020-04-07 | 2020-09-26 |  |  |  |  |  |  |  |  |  |  |  |  |  |  |  |
|  | 2 | **Admin/COLO 1** |  |  | 2020-04-07 | 2020-09-26 |  |  |  |  |  |  |  |  |  |  |  |  |  |  |  |
| MWH06-2016 |  | Water treatment Skids Procurement ( sourcing materials and Materail approval only) |  | 192.5d | 2020-04-07 A | 2020-07-06 A | MWH06-2002 FS+7d | 100% | 2020-04-27 | 2020-11-06 |  | 7-8s w/Holidays Clayco | 676 | S |  |  | 1B |  | All |  |  |
| MWH06-2102 |  | Design / Lead Time for M&P overhead |  | 30d | 2020-06-22 A | 2020-09-26 A | MWH06-2003, MWH06-2008 FF+5d | 100% | 2020-06-29 | 2020-07-28 |  | 7-8s wo/Holidays Clayco | 677 | S |  |  |  |  | All |  |  |
| MWH06-2104 |  | Design / Lead Time for Fire Alarm |  | 60d | 2020-06-22 A | 2020-08-28 A | MWH06-2003 | 100% | 2020-06-29 | 2020-08-27 |  | 7-8s wo/Holidays Clayco | 679 | S |  |  |  |  | All |  |  |
| MWH06-2103 |  | Design / Lead Time for Fire Protection |  | 30d | 2020-07-27 A | 2020-08-28 A | MWH06-2003 | 100% | 2020-08-31 | 2020-09-29 | start on or after 2020-07-06 | 7-8s wo/Holidays Clayco | 678 | S |  |  |  |  | All |  |  |

| ID | WBS | Activity | Type | Duration | Start | Finish | Predecessors | Complete | Planned start | Planned finish | Constraint | Calendar | COLO | CELL | DELAY |
| --- | --- | --- | --- | --- | --- | --- | --- | --- | --- | --- | --- | --- | --- | --- | --- |
|  | 6 | **DELAY** |  |  | 2020-07-13 | 2021-10-22 |  |  |  |  |  |  |  |  |  |
|  | A | **Executed Delays (CO-66)** |  |  | 2020-07-13 | 2021-10-08 |  |  |  |  |  |  |  |  |  |
|  | 1 | **Delay #1 Late Submittal Approval** |  |  | 2020-07-13 | 2020-09-25 |  |  |  |  |  |  |  |  |  |
| MWH06.D1.S1010 |  | NOPC Letter #2- Late OFCI Vendor Approved Submittals | milestone | 0d | 2020-07-13 A | 2020-07-13 A | MWH.06.M1000 | 100% | 2020-08-10 | 2020-08-10 |  |  | S | All | 1 |
| MWH06.D1.S1020 |  | MSFT - Soft release on unapproved URS submittal | milestone | 0d | 2020-08-05 A | 2020-08-05 A | MWH06.D1.S1010 | 100% | 2020-08-14 | 2020-08-14 |  |  | S | All | 1 |
| MWH06.D1.S1030 |  | URS/UMS Concrete Anchor and Vault Design |  | 14d | 2020-08-05 A | 2020-08-28 A | MWH06.D1.S1020, MWH06.D1.S1010 | 100% | 2020-08-10 | 2020-08-26 |  |  | S | All | 1 |
| MWH06.D1.S1040 |  | URS/UMS Vault Submiital Review by EOR |  | 5d | 2020-08-29 A | 2020-09-25 A | MWH06.D1.S1030 | 100% | 2020-09-14 | 2020-09-18 |  |  | S | All | 1 |
|  | 2 | **Delay #2 Late UPM Deliveries** |  |  | 2020-09-19 | 2021-01-04 |  |  |  |  |  |  |  |  |  |
|  | 1 | **Admin/ COLO-1** |  |  | 2020-09-19 | 2020-12-08 |  |  |  |  |  |  |  |  |  |
| MWH06.D2.S1010 |  | Delay in UPM Delivery (Duration = Colo1 Cell-1 PSR (9/19) to MSFT delivery) |  | 79d | 2020-09-19 A | 2020-12-08 A | MWH06.C1.E1000 | 100% | 2020-09-28 | 2020-12-15 | start on or after 2020-09-19 | 7-8s w/Holidays Clayco | 1 | 1 | 2 |
| MWH06-9740 |  | Delay in UPM Delivery (Duration = Colo1 Cell-3 PSR(9/28) to MSFT delivery) |  | 56d | 2020-09-28 A | 2020-11-23 A | MWH06.C1.E1030 | 100% | 2020-11-02 | 2020-12-28 | start on or after 2020-09-19 | 7-8s w/Holidays Clayco | 1 | 3 | 2 |
| MWH06-9739 |  | Delay in UPM Delivery (Duration = Colo1 Cell-2 PSR(10/13) to MSFT delivery) |  | 41d | 2020-10-13 A | 2020-11-23 A | MWH06.C1.E1080 | 100% | 2020-11-02 | 2020-12-12 | start on or after 2020-10-13 | 7-8s w/Holidays Clayco | 1 | 2 | 2 |
| MWH06-9741 |  | Delay in UPM Delivery (Duration = Colo1 Cell-4 PSR (10/28) to MSFT delivery) |  | 26d | 2020-10-28 A | 2020-11-23 A | MWH06.C1.E1100 | 100% | 2020-11-02 | 2020-11-27 | start on or after 2020-10-27 | 7-Day Workweek | 1 | 4 | 2 |
|  | 2 | **COLO-2** |  |  | 2020-11-25 | 2020-12-16 |  |  |  |  |  |  |  |  |  |
| MWH06-9891 |  | Delay in UPM Delivery (Duration = Colo2 Cell-1 11/25 to MSFT delivery) |  | 12d | 2020-11-25 A | 2020-12-07 A | MWH06.C2.E1000 | 100% | 2020-09-28 | 2020-10-09 | start on or after 2020-09-19 | 7-8s w/Holidays Clayco | 2 | 1 | 2 |
| MWH06-9892 |  | Delay in UPM Delivery (Duration = Colo2 Cell-2 11/25 to MSFT delivery) |  | 14d | 2020-11-25 A | 2020-12-09 A | MWH06.C2.E1030 | 100% | 2020-11-02 | 2020-11-15 | start on or after 2020-10-13 | 7-8s w/Holidays Clayco | 2 | 2 | 2 |
| MWH06-9893 |  | Delay in UPM Delivery (Duration = Colo2 Cell-4 11/25 to MSFT delivery) |  | 5d | 2020-11-25 A | 2020-12-10 A | MWH06.C2.E1100 | 100% | 2020-11-02 | 2020-11-06 | start on or after 2020-10-27 | 7-Day Workweek | 2 | 4 | 2 |
| MWH06-9894 |  | Delay in UPM Delivery (Duration = Colo2 Cell-3 11/25 to MSFT delivery) |  | 14d | 2020-11-25 A | 2020-12-16 A | MWH06.C2.E1080 | 100% | 2020-11-02 | 2020-11-15 | start on or after 2020-09-19 | 7-8s w/Holidays Clayco | 2 | 3 | 2 |
|  | 3 | **COLO-3** |  |  | 2020-11-23 | 2021-01-03 |  |  |  |  |  |  |  |  |  |
| MWH06-9895 |  | Delay in UPM Delivery (Duration = Colo3 Cell-1 PSR 11/23 to MSFT delivery) |  | 17d | 2020-11-23 A | 2020-12-18 A | MWH06.C3.E1000 | 100% | 2020-09-28 | 2020-10-14 | start on or after 2020-11-23 | 7-8s w/Holidays Clayco | 3 | 1 | 2 |
| MWH06-9896 |  | Delay in UPM Delivery (Duration = Colo3 Cell-2 11/23 to MSFT delivery) |  | 11d | 2020-11-23 A | 2020-12-18 A | MWH06.C3.E1020 | 100% | 2020-11-02 | 2020-11-12 | start on or after 2020-11-23 | 7-8s w/Holidays Clayco | 3 | 2 | 2 |
| MWH06-9897 |  | Delay in UPM Delivery (Duration = Colo3 Cell-4 11/23 to MSFT delivery) |  | 10d | 2020-11-23 A | 2021-01-03 A | MWH06.C3.E1100 | 100% | 2020-11-02 | 2020-11-11 | start on or after 2020-11-23 | 7-Day Workweek | 3 | 4 | 2 |
| MWH06-9898 |  | Delay in UPM Delivery (Duration = Colo3 Cell-3 11/23 to MSFT delivery) |  | 17d | 2020-11-23 A | 2021-01-03 A | MWH06.C3.E1080 | 100% | 2020-11-02 | 2020-11-18 | start on or after 2020-11-23 | 7-8s w/Holidays Clayco | 3 | 3 | 2 |
|  | 4 | **COLO-4** |  |  | 2020-12-07 | 2021-01-04 |  |  |  |  |  |  |  |  |  |
| MWH06-9899 |  | Delay in UPM Delivery (Duration = Colo4 Cell-1 12/7 to MSFT delivery) |  | 0d | 2020-12-07 A | 2020-12-18 A | MWH06.C4.E1000 | 100% | 2021-01-09 | 2021-01-09 | start on or after 2020-12-07 | 7-8s w/Holidays Clayco | 4 | 1 | 2 |
| MWH06-9900 |  | Delay in UPM Delivery (Duration = Colo4 Cell-2 12/7 to MSFT delivery) |  | 0d | 2020-12-07 A | 2020-12-17 A | MWH06.C4.E1030 | 100% | 2021-01-05 | 2021-01-05 | start on or after 2020-12-07 | 7-8s w/Holidays Clayco | 4 | 2 | 2 |
| MWH06-9901 |  | Delay in UPM Delivery (Duration = Colo4 Cell-4 12/18 to MSFT delivery) |  | 0d | 2020-12-18 A | 2021-01-04 A | MWH06.C4.E1100 | 100% | 2021-01-09 | 2021-01-09 | start on or after 2020-12-18 | 7-Day Workweek | 4 | 4 | 2 |
| MWH06-9902 |  | Delay in UPM Delivery (Duration = Colo4 Cell-3 12/18 to MSFT delivery) |  | 0d | 2020-12-18 A | 2021-01-04 A | MWH06.C4.E1080 | 100% | 2021-01-14 | 2021-01-14 | start on or after 2021-01-03 | 7-8s w/Holidays Clayco | 4 | 3 | 2 |

| ID | WBS | Activity | Type | Duration | Start | Finish | Predecessors | Complete | Planned start | Planned finish | Resources | COLO | CELL | DELAY | TRADE | HRA - Required Permit- Priority-1 | HRA - Required Permit- Priority-2 |
| --- | --- | --- | --- | --- | --- | --- | --- | --- | --- | --- | --- | --- | --- | --- | --- | --- | --- |
|  | 3 | **Delay #3 Fluid Cooler** |  |  | 2020-09-22 | 2021-06-10 |  |  |  |  |  |  |  |  |  |  |  |
| MWH06-9735 |  | MSFT decision to Bid Fluid cooler scope to Stetner | milestone | 0d | 2020-09-22 A | 2020-09-22 A | MWH.06.M1000 | 100% | 2020-09-28 | 2020-09-28 |  | 0 | All | 3 |  |  |  |
| MWH06-9736 |  | Review Fluid Cooler wiring and devices buyout with Stetner |  | 4d | 2020-09-23 A | 2020-10-09 A | MWH06-9735 | 100% | 2020-09-28 | 2020-10-01 |  | 0 | All | 3 |  |  |  |
| MWH06-9737 |  | Change order release for fluid cooler wiring devices |  | 2d | 2020-10-10 A | 2020-10-26 A | MWH06-9736, MWH06-9914 | 100% | 2020-10-19 | 2020-10-20 |  | 0 | All | 3 |  |  |  |
|  | 1 | **COLO-1** |  |  | 2021-01-29 | 2021-03-27 |  |  |  |  |  |  |  |  |  |  |  |
|  | 1 | **Cell 1** |  |  | 2021-02-01 | 2021-02-20 |  |  |  |  |  |  |  |  |  |  |  |
| MWH06.D3.C1.C1030 |  | Fluid Cooler RI in place |  | 6d | 2021-02-01 A | 2021-02-20 A | MWH06.C1.C1130 | 100% | 2021-02-01 | 2021-02-08 | Stetner Crew [60 h] | 1 | 1 | 3 | 4 |  |  |
| MWH06.D3.C1.C1020 |  | Fluid Cooler Panel installation |  | 3d | 2021-02-09 A | 2021-02-11 A | MWH06-9737, MWH06.C1.C1110 | 100% | 2021-03-01 | 2021-03-03 | Stetner Crew [30 h] | 1 | 1 | 3 | 4 | 3 | 3 |
| MWH06.D3.C1.C1040 |  | Fluid Cooler Wire install and Term |  | 6d | 2021-02-09 A | 2021-02-20 A | MWH06.D3.C1.C1030 | 100% | 2021-03-05 | 2021-03-11 | Stetner Crew [60 h] | 1 | 1 | 3 | 4 |  |  |
|  | 2 | **Cell 3** |  |  | 2021-01-29 | 2021-03-27 |  |  |  |  |  |  |  |  |  |  |  |
| MWH06.D3.C1.C3030 |  | Fluid Cooler RI in place |  | 6d | 2021-01-29 A | 2021-02-02 A | MWH06.D3.C1.C3020 FF, MWH06.D3.C1.C1030 | 100% | 2021-03-18 | 2021-03-25 | Stetner Crew [60 h] | 1 | 3 | 3 | 4 |  |  |
| MWH06.D3.C1.C3020 |  | Fluid Cooler Panel installation |  | 3d | 2021-02-22 A | 2021-02-24 A | MWH06.D3.C1.C1020, MWH06.C1.C3150 | 100% | 2021-03-23 | 2021-03-25 | Stetner Crew [30 h] | 1 | 3 | 3 | 4 | 3 | 3 |
| MWH06.D3.C1.C3040 |  | Fluid Cooler Wire install and Term |  | 6d | 2021-02-25 A | 2021-03-27 A | MWH06.D3.C1.C3030 | 100% | 2021-03-01 | 2021-03-06 | Stetner Crew [60 h] | 1 | 3 | 3 | 4 |  |  |
|  | 3 | **Cell 2** |  |  | 2021-02-18 | 2021-03-06 |  |  |  |  |  |  |  |  |  |  |  |
| MWH06.D3.C1.C2020 |  | Fluid Cooler Panel installation |  | 3d | 2021-02-18 A | 2021-02-20 A | MWH06.C1.C2140 | 100% | 2021-03-15 | 2021-03-17 | Stetner Crew [30 h] | 1 | 2 | 3 | 4 | 3 | 3 |
| MWH06.D3.C1.C2030 |  | Fluid Cooler RI in place |  | 6d | 2021-02-22 A | 2021-02-25 A | MWH06.D3.C1.C2020 FF | 100% | 2021-02-19 | 2021-02-25 | Stetner Crew [60 h] | 1 | 2 | 3 | 4 |  |  |
| MWH06.D3.C1.C2040 |  | Fluid Cooler Wire install and Term |  | 6d | 2021-02-26 A | 2021-03-06 A | MWH06.D3.C1.C2030 | 100% | 2021-03-18 | 2021-03-25 | Stetner Crew [60 h] | 1 | 2 | 3 | 4 |  |  |
|  | 4 | **Cell 4** |  |  | 2021-02-15 | 2021-03-06 |  |  |  |  |  |  |  |  |  |  |  |
| MWH06.D3.C1.C4010 |  | Fluid Cooler Panel installation |  | 3d | 2021-02-15 A | 2021-02-17 A | MWH06.D3.C1.C2020, MWH06.C1.C4150 | 100% | 2021-03-18 | 2021-03-22 | Stetner Crew [30 h] | 1 | 4 | 3 | 4 | 3 | 3 |
| MWH06.D3.C1.C4020 |  | Fluid Cooler RI in place |  | 6d | 2021-02-22 A | 2021-02-27 A | MWH06.D3.C1.C4010 FF | 100% | 2021-03-01 | 2021-03-06 | Stetner Crew [60 h] | 1 | 4 | 3 | 4 |  |  |
| MWH06.D3.C1.C4030 |  | Fluid Cooler Wire install and Term |  | 6d | 2021-03-01 A | 2021-03-06 A | MWH06.D3.C1.C4020 | 100% | 2021-03-22 | 2021-03-27 | Stetner Crew [60 h] | 1 | 4 | 3 | 4 |  |  |
|  | 5 | **COLO-2** |  |  | 2021-03-04 | 2021-04-03 |  |  |  |  |  |  |  |  |  |  |  |
|  | 1 | **Cell 1** |  |  | 2021-03-04 | 2021-03-18 |  |  |  |  |  |  |  |  |  |  |  |
| MWH06.D3.C2.C1010 |  | Fluid Cooler Panel installation |  | 3d | 2021-03-04 A | 2021-03-08 A | MWH06.D3.C1.C3020, MWH06.C2.C1130 | 100% | 2021-03-29 | 2021-03-31 | Stetner Crew [30 h] | 2 | 1 | 3 | 4 | 3 | 3 |
| MWH06.D3.C2.C1020 |  | Fluid Cooler RI in place |  | 6d | 2021-03-04 A | 2021-03-13 A | MWH06.D3.C2.C1010 FF, MWH06.D3.C1.C3030 | 100% | 2021-03-25 | 2021-03-31 | Stetner Crew [60 h] | 2 | 1 | 3 | 4 |  |  |
| MWH06.D3.C2.C1030 |  | Fluid Cooler Wire install and Term |  | 6d | 2021-03-13 A | 2021-03-18 A | MWH06.D3.C2.C1020 | 100% | 2021-04-01 | 2021-04-07 | Stetner Crew [60 h] | 2 | 1 | 3 | 4 |  |  |

| ID | WBS | Activity | Duration | Start | Finish | Predecessors | Complete | Planned start | Planned finish | Resources | COLO | TRADE | CELL | DELAY | HRA - Required Permit- Priority-1 | HRA - Required Permit- Priority-2 |
| --- | --- | --- | --- | --- | --- | --- | --- | --- | --- | --- | --- | --- | --- | --- | --- | --- |
|  | 2 | **Cell 3** |  | 2021-03-18 | 2021-03-26 |  |  |  |  |  |  |  |  |  |  |  |
| MWH06.D3.C2.C3020 |  | Fluid Cooler Panel installation | 3d | 2021-03-18 A | 2021-03-22 A | MWH06.D3.C2.C1010, MWH06.C2.C3150 | 100% | 2021-03-31 | 2021-04-02 | Stetner Crew [30 h] | 2 | 4 | 3 | 3 | 3 | 3 |
| MWH06.D3.C2.C3030 |  | Fluid Cooler RI in place | 6d | 2021-03-22 A | 2021-03-24 A | MWH06.D3.C2.C3020 FF | 100% | 2021-03-31 | 2021-04-06 | Stetner Crew [60 h] | 2 | 4 | 3 | 3 |  |  |
| MWH06.D3.C2.C3040 |  | Fluid Cooler Wire install and Term | 6d | 2021-03-24 A | 2021-03-26 A | MWH06.D3.C2.C3030 | 100% | 2021-04-07 | 2021-04-14 | Stetner Crew [60 h] | 2 | 4 | 3 | 3 |  |  |
|  | 3 | **Cell 2** |  | 2021-03-24 | 2021-04-03 |  |  |  |  |  |  |  |  |  |  |  |
| MWH06.D3.C2.C2020 |  | Fluid Cooler Panel installation | 3d | 2021-03-24 A | 2021-03-27 A | MWH06.D3.C1.C4010, MWH06.C2.C2180 | 100% | 2021-04-01 | 2021-04-03 | Stetner Crew [30 h] | 2 | 4 | 2 | 3 | 3 | 3 |
| MWH06.D3.C2.C2030 |  | Fluid Cooler RI in place | 6d | 2021-03-29 A | 2021-03-31 A | MWH06.D3.C2.C2020 FF | 100% | 2021-03-31 | 2021-04-06 | Stetner Crew [60 h] | 2 | 4 | 2 | 3 |  |  |
| MWH06.D3.C2.C2040 |  | Fluid Cooler Wire install and Term | 4d | 2021-03-31 A | 2021-04-03 A | MWH06.D3.C1.C4030, MWH06.D3.C2.C2030 | 100% | 2021-04-26 | 2021-04-29 | Stetner Crew | 2 | 4 | 2 | 3 |  |  |
|  | 2 | **COLO-3** |  | 2021-04-07 | 2021-05-26 |  |  |  |  |  |  |  |  |  |  |  |
|  | 1 | **Cell 1** |  | 2021-04-07 | 2021-04-24 |  |  |  |  |  |  |  |  |  |  |  |
| MWH06.D3.C3.C1020 |  | Fluid Cooler Panel installation | 3d | 2021-04-07 A | 2021-04-09 A | MWH06.D3.C2.C3020, MWH06.C3.C1170 | 100% | 2021-05-04 | 2021-05-06 | Stetner Crew [30 h] | 3 | 4 | 1 | 3 | 3 | 3 |
| MWH06.D3.C3.C1030 |  | Fluid Cooler RI in place | 6d | 2021-04-12 A | 2021-04-17 A | MWH06.D3.C3.C1020, MWH06.D3.C2.C3030 | 100% | 2021-05-07 | 2021-05-13 | Stetner Crew [60 h] | 3 | 4 | 1 | 3 |  |  |
| MWH06.D3.C3.C1040 |  | Fluid Cooler Wire install and Term | 6d | 2021-04-19 A | 2021-04-24 A | MWH06.D3.C3.C1030, MWH06.D3.C2.C3040 | 100% | 2021-05-14 | 2021-05-20 | Stetner Crew [60 h] | 3 | 4 | 1 | 3 |  |  |
|  | 3 | **Cell 2** |  | 2021-04-30 | 2021-05-18 |  |  |  |  |  |  |  |  |  |  |  |
| MWH06.D3.C3.C2020 |  | Fluid Cooler Panel installation | 1d | 2021-04-30 A | 2021-05-04 A | MWH06.D3.C2.C2020, MWH06.C3.C2170 | 100% | 2021-05-17 | 2021-05-17 | Stetner Crew [30 h] | 3 | 4 | 2 | 3 | 3 | 3 |
| MWH06.D3.C3.C2030 |  | Fluid Cooler RI in place | 1d | 2021-05-05 A | 2021-05-11 A | MWH06.D3.C3.C2020, MWH06.D3.C2.C2020 | 100% | 2021-05-20 | 2021-05-20 | Stetner Crew [60 h] | 3 | 4 | 2 | 3 |  |  |
| MWH06.D3.C3.C2040 |  | Fluid Cooler Wire install and Term | 1d | 2021-05-12 A | 2021-05-18 A | MWH06.D3.C3.C2030, MWH06.D3.C2.C2040, MWH06.D3.C2.C2020 | 100% | 2021-05-28 | 2021-05-28 | Stetner Crew [60 h] | 3 | 4 | 2 | 3 |  |  |
|  | 4 | **Cell 4** |  | 2021-05-08 | 2021-05-26 |  |  |  |  |  |  |  |  |  |  |  |
| MWH06.D3.C3.C4020 |  | Fluid Cooler Panel installation | 3d | 2021-05-08 A | 2021-05-11 A | MWH06.D3.C3.C2020, MWH06.C3.C4140, MWH06-10530 | 100% | 2021-06-01 | 2021-06-03 | Stetner Crew [30 h] | 3 | 4 | 4 | 3 | 3 | 3 |
| MWH06.D3.C3.C4030 |  | Fluid Cooler RI in place | 6d | 2021-05-12 A | 2021-05-18 A | MWH06.D3.C3.C4020, MWH06.D3.C3.C2030, MWH06-10530 | 100% | 2021-06-04 | 2021-06-10 | Stetner Crew [60 h] | 3 | 4 | 4 | 3 |  |  |
| MWH06.D3.C3.C4040 |  | Fluid Cooler Wire install and Term | 6d | 2021-05-19 A | 2021-05-26 A | MWH06.D3.C3.C4030, MWH06-10530 | 100% | 2021-06-11 | 2021-06-18 | Stetner Crew [60 h] | 3 | 4 | 4 | 3 |  |  |
|  | 3 | **COLO-4** |  | 2021-05-08 | 2021-06-10 |  |  |  |  |  |  |  |  |  |  |  |
|  | 1 | **Cell 1** |  | 2021-05-08 | 2021-05-26 |  |  |  |  |  |  |  |  |  |  |  |
| MWH06.D3.C4.C1020 |  | Fluid Cooler Panel installation | 3d | 2021-05-08 A | 2021-05-11 A | MWH06.D3.C3.C1020, MWH06.C4.C1120, MWH06-10530 | 100% | 2021-06-08 | 2021-06-10 | Stetner Crew [30 h] | 4 | 4 | 1 | 3 | 3 | 3 |
| MWH06.D3.C4.C1030 |  | Fluid Cooler RI in place | 6d | 2021-05-12 A | 2021-05-18 A | MWH06.D3.C4.C1020, MWH06.D3.C3.C1030, MWH06.D3.C3.C1020, MWH06-10530 | 100% | 2021-06-11 | 2021-06-18 | Stetner Crew [60 h] | 4 | 4 | 1 | 3 |  |  |
| MWH06.D3.C4.C1040 |  | Fluid Cooler Wire install and Term | 6d | 2021-05-19 A | 2021-05-26 A | MWH06.D3.C4.C1030, MWH06.D3.C3.C1040, MWH06.D3.C3.C1030, MWH06.D3.C3.C1020, MWH06-10530 | 100% | 2021-06-19 | 2021-06-25 | Stetner Crew [60 h] | 4 | 4 | 1 | 3 |  |  |

| ID | WBS | Activity | Type | Duration | Start | Finish | Predecessors | Complete | Planned start | Planned finish | Constraint | Calendar | Resources | COLO | TRADE | CELL | DELAY | HRA - Required Permit- Priority-1 | HRA - Required Permit- Priority-2 |
| --- | --- | --- | --- | --- | --- | --- | --- | --- | --- | --- | --- | --- | --- | --- | --- | --- | --- | --- | --- |
|  | 2 | **Cell 3** |  |  | 2021-05-12 | 2021-06-03 |  |  |  |  |  |  |  |  |  |  |  |  |  |
| MWH06.D3.C4.C3020 |  | Fluid Cooler Panel installation |  | 3d | 2021-05-12 A | 2021-05-14 A | MWH06.D3.C4.C1020, MWH06.C4.C3120, MWH06-10530 | 100% | 2021-06-11 | 2021-06-15 |  |  | Stetner Crew [30 h] | 4 | 4 | 3 | 3 | 3 | 3 |
| MWH06.D3.C4.C3030 |  | Fluid Cooler RI in place |  | 6d | 2021-05-19 A | 2021-05-26 A | MWH06.D3.C4.C3020, MWH06.D3.C4.C1030, MWH06-10530 | 100% | 2021-06-19 | 2021-06-25 |  |  | Stetner Crew [60 h] | 4 | 4 | 3 | 3 |  |  |
| MWH06.D3.C4.C3040 |  | Fluid Cooler Wire install and Term |  | 6d | 2021-05-27 A | 2021-06-03 A | MWH06.D3.C4.C3030, MWH06.D3.C4.C1040, MWH06-10530 | 100% | 2021-06-26 | 2021-07-02 |  |  | Stetner Crew [60 h] | 4 | 4 | 3 | 3 |  |  |
|  | 3 | **Cell 2** |  |  | 2021-05-12 | 2021-06-03 |  |  |  |  |  |  |  |  |  |  |  |  |  |
| MWH06.D3.C4.C2020 |  | Fluid Cooler Panel installation |  | 3d | 2021-05-12 A | 2021-05-14 A | MWH06.D3.C3.C4020, MWH06.C4.C2120, MWH06-10530 | 100% | 2021-06-30 | 2021-07-02 |  |  | Stetner Crew [30 h] | 4 | 4 | 2 | 3 | 3 | 3 |
| MWH06.D3.C4.C2030 |  | Fluid Cooler RI in place |  | 6d | 2021-05-19 A | 2021-05-26 A | MWH06.D3.C4.C2020, MWH06.D3.C3.C4030, MWH06-10530 | 100% | 2021-07-06 | 2021-07-12 |  |  | Stetner Crew [60 h] | 4 | 4 | 2 | 3 |  |  |
| MWH06.D3.C4.C2040 |  | Fluid Cooler Wire install and Term |  | 6d | 2021-05-27 A | 2021-06-03 A | MWH06.D3.C4.C2030, MWH06.D3.C3.C4040, MWH06-10530 | 100% | 2021-07-13 | 2021-07-19 |  |  | Stetner Crew [60 h] | 4 | 4 | 2 | 3 |  |  |
|  | 4 | **Cell 4** |  |  | 2021-05-15 | 2021-06-10 |  |  |  |  |  |  |  |  |  |  |  |  |  |
| MWH06.D3.C4.C4020 |  | Fluid Cooler Panel installation |  | 3d | 2021-05-15 A | 2021-05-18 A | MWH06.D3.C4.C2020, MWH06.C4.C4120, MWH06-10530 | 100% | 2021-07-06 | 2021-07-08 |  |  | Stetner Crew [30 h] | 4 | 4 | 4 | 3 | 3 | 3 |
| MWH06.D3.C4.C4030 |  | Fluid Cooler RI in place |  | 6d | 2021-05-27 A | 2021-06-03 A | MWH06.D3.C4.C4020, MWH06.D3.C4.C2030, MWH06-10530 | 100% | 2021-07-13 | 2021-07-19 |  |  | Stetner Crew [60 h] | 4 | 4 | 4 | 3 |  |  |
| MWH06.D3.C4.C4040 |  | Fluid Cooler Wire install and Term |  | 6d | 2021-06-04 A | 2021-06-10 A | MWH06.D3.C4.C4030, MWH06.D3.C4.C2040, MWH06-10530 | 100% | 2021-07-20 | 2021-07-27 |  |  | Stetner Crew [60 h] | 4 | 4 | 4 | 3 |  |  |
|  | 4 | **Delay #4 DRB#2** |  |  | 2020-09-28 | 2021-05-05 |  |  |  |  |  |  |  |  |  |  |  |  |  |
| MWH06.D4.S1010 |  | DRB#2 Approval | milestone | 0d | 2020-09-28 A | 2020-09-28 A | MWH06-2003 | 100% | 2020-10-19 | 2020-10-19 | start on or after 2020-09-22 |  |  | 0 |  | All | 4 |  |  |
|  | 1 | **Admin** |  |  | 2021-01-07 | 2021-05-05 |  |  |  |  |  |  |  |  |  |  |  |  |  |
| MWH06.D4.S1020 |  | ADMIN Overhead Rough-in (DRB#2) |  | 6d | 2021-01-07 A | 2021-01-14 A | MWH06.D4.S1010, MWH06AD-1024 | 100% | 2021-02-05 | 2021-02-12 |  |  | VECA Electric [360 h] | A |  | ADMIN | 4 |  |  |
| MWH06.D4.S1030 |  | ADMIN Electrical Room Build out (DRB#2) |  | 4d | 2021-01-15 A | 2021-01-21 A | MWH06AD-1019, MWH06AD-1016 | 100% | 2021-02-01 | 2021-02-04 |  |  | VECA Electric [80 h] | A |  | ADMIN | 4 |  |  |
| MWH06.D4.S1040 |  | ADMIN Lighting installation (DRB#2) |  | 4d | 2021-04-30 A | 2021-05-05 A | MWH06AD-1025, MWH06.D4.S1030 | 100% | 2021-05-17 | 2021-05-20 |  |  | VECA Electric [360 h] | A |  | ADMIN | 4 |  |  |
|  | 2 | **COLO-1** |  |  |  |  |  |  |  |  |  |  |  |  |  |  |  |  |  |
|  | 1 | **Cell-1** |  |  |  |  |  |  |  |  |  |  |  |  |  |  |  |  |  |
|  | 2 | **Cell-3** |  |  |  |  |  |  |  |  |  |  |  |  |  |  |  |  |  |
|  | 3 | **Cell-2** |  |  |  |  |  |  |  |  |  |  |  |  |  |  |  |  |  |
|  | 4 | **Cell-4** |  |  |  |  |  |  |  |  |  |  |  |  |  |  |  |  |  |
|  | 5 | **COLO-2** |  |  |  |  |  |  |  |  |  |  |  |  |  |  |  |  |  |
|  | 1 | **Cell-1** |  |  |  |  |  |  |  |  |  |  |  |  |  |  |  |  |  |
|  | 2 | **Cell-3** |  |  |  |  |  |  |  |  |  |  |  |  |  |  |  |  |  |
|  | 3 | **Cell-2** |  |  |  |  |  |  |  |  |  |  |  |  |  |  |  |  |  |
|  | 4 | **Cell-4** |  |  |  |  |  |  |  |  |  |  |  |  |  |  |  |  |  |
|  | 3 | **COLO-3** |  |  |  |  |  |  |  |  |  |  |  |  |  |  |  |  |  |
|  | 1 | **Cell-1** |  |  |  |  |  |  |  |  |  |  |  |  |  |  |  |  |  |
|  | 2 | **Cell-3** |  |  |  |  |  |  |  |  |  |  |  |  |  |  |  |  |  |
|  | 3 | **Cell-2** |  |  |  |  |  |  |  |  |  |  |  |  |  |  |  |  |  |
|  | 4 | **Cell-4** |  |  |  |  |  |  |  |  |  |  |  |  |  |  |  |  |  |
|  | 4 | **COLO-4** |  |  |  |  |  |  |  |  |  |  |  |  |  |  |  |  |  |
|  | 1 | **Cell-1** |  |  |  |  |  |  |  |  |  |  |  |  |  |  |  |  |  |
|  | 2 | **Cell-3** |  |  |  |  |  |  |  |  |  |  |  |  |  |  |  |  |  |
|  | 3 | **Cell-2** |  |  |  |  |  |  |  |  |  |  |  |  |  |  |  |  |  |
|  | 4 | **Cell-4** |  |  |  |  |  |  |  |  |  |  |  |  |  |  |  |  |  |
|  | 5 | **Delay #5 Water treatment Skids Delay** |  |  | 2020-08-24 | 2020-12-04 |  |  |  |  |  |  |  |  |  |  |  |  |  |
| MWH06.D5.S1020 |  | Start of L&I Process / MSFT direction to proceed with Fabrication | milestone | 0d | 2020-08-24 A | 2020-08-24 A | MWH06-2003 | 100% | 2020-09-14 | 2020-09-14 | start on or after 2020-08-31 | 7-8s wo/Holidays Clayco |  | 0 |  | All | 5 |  |  |
| MWH06.D5.S1000 |  | Water Treatmant Skid Fabrication |  | 85d | 2020-08-25 A | 2020-11-28 A | MWH06.D5.S1020, MWH06-2016 | 100% | 2020-09-14 | 2020-12-07 |  | 7-8s wo/Holidays Clayco |  | 0 |  | All | 5 |  |  |
| MWH06.D5.S1010 |  | L&I approval process |  | 30d | 2020-08-25 A | 2020-10-16 A | MWH06.D5.S1020, MWH06-2016 | 100% | 2020-09-14 | 2020-10-13 |  | 7-8s wo/Holidays Clayco |  | 0 |  | All | 5 |  |  |
| MWH06.D5.S1030 |  | Water treatment delivery COLO-1 |  | 7d | 2020-11-28 A | 2020-12-04 A | MWH06.D5.S1010, MWH06.D5.S1000 | 100% | 2020-12-21 | 2020-12-27 |  | 7-8s wo/Holidays Clayco |  | 0 |  | All | 5 |  |  |

| ID | WBS | Activity | Type | Duration | Start | Finish | Predecessors | Complete | Planned start | Planned finish | Constraint | Calendar | Resources | COLO | CELL | DELAY | HRA - Safety Level | HRA - Required Permit- Priority-1 | HRA - Required Permit- Priority-2 | Critical Path mer to COLO |
| --- | --- | --- | --- | --- | --- | --- | --- | --- | --- | --- | --- | --- | --- | --- | --- | --- | --- | --- | --- | --- |
|  | 6 | **Delay #6 DRB#3** |  |  | 2020-09-11 | 2021-10-08 |  |  |  |  |  |  |  |  |  |  |  |  |  |  |
|  | 1 | **Procurement** |  |  | 2020-09-11 | 2020-11-23 |  |  |  |  |  |  |  |  |  |  |  |  |  |  |
| MWH06.D6.S1000.1 |  | DRB#3 Approval-Part A- CSA | milestone | 0d | 2020-09-11 A | 2020-09-11 A | MWH06-2003 | 100% | 2020-10-19 | 2020-10-19 | start on or after 2020-09-14 |  |  | 0 | All | 6 |  |  |  |  |
| MWH06.D6.S1000 |  | DRB#3 Approval-Part B- MEP | milestone | 0d | 2020-10-08 A | 2020-10-08 A | MWH06-2003 | 100% | 2020-10-19 | 2020-10-19 | start on or after 2020-09-18 |  |  | 0 | All | 6 |  |  |  |  |
| MWH06.D6.S1010 |  | Submit and approve Shop drawings for UPM junstion box |  | 21d | 2020-10-09 A | 2020-10-14 A | MWH06.D6.S1000, MWH06-9914 | 100% | 2020-10-19 | 2020-11-08 |  | 7-8s wo/Holidays Clayco |  | 0 | All | 6 |  |  |  |  |
| MWH06.D6.S1030 |  | Lead time for junction box |  | 42d | 2020-10-15 A | 2020-11-23 A | MWH06.D6.S1010 | 100% | 2020-11-02 | 2020-12-13 |  | 7-8s wo/Holidays Clayco |  | 0 | All | 6 |  |  |  |  |
| MWH06.D6.S1040 |  | Fabrication and Delivery of PEMB pentrations support steel |  | 5d | 2020-10-23 A | 2020-10-29 A | MWH06.D6.S1000.1 | 100% | 2020-11-09 | 2020-11-13 |  | 7-8s wo/Holidays Clayco |  | 0 | All | 6 |  |  |  |  |
|  | 6 | **COLO-1** |  |  | 2020-11-16 | 2021-05-28 |  |  |  |  |  |  |  |  |  |  |  |  |  |  |
|  | 2 | **COLO-1 CEll-1** |  |  | 2020-11-16 | 2021-05-10 |  |  |  |  |  |  |  |  |  |  |  |  |  |  |
|  | 2 | **Insterior Systems Build-out** |  |  | 2020-11-16 | 2021-01-08 |  |  |  |  |  |  |  |  |  |  |  |  |  |  |
| MWH06.D6.C1.C1110 |  | Sure steel - PEMB MER penetration framing |  | 4d | 2020-11-16 A | 2020-11-18 A | MWH06.D6.S1040 | 100% | 2020-11-30 | 2020-12-03 |  |  | Steel [40 h] | 1 | 1 | 6 | 2 |  |  |  |
| MWH06.D6.C1.C1120 |  | Wall Penetration installation rough-in (Install Roxtec frame) (DRB#3) |  | 1d | 2020-12-14 A | 2020-12-15 A | MWH06.D6.S1000, MWH06.D6.C1.C1110 | 100% | 2021-01-02 | 2021-01-02 |  |  | VECA Electric [20 h] | 1 | 1 | 6 | 2 | 3 | 4 |  |
| MWH06.D6.C1.C1130 |  | Install added DRB#3 Tray and conduit |  | 3d | 2021-01-04 A | 2021-01-08 A | MWH06.D6.C1.C1120, MWH06.C1.C1170, MWH06-9931 | 100% | 2021-02-01 | 2021-02-03 |  |  | VECA Electric [60 h] | 1 | 1 | 6 | 2 | 3 | 4 |  |
|  | 1 | **Exterior Systmes Build-out** |  |  | 2021-01-18 | 2021-05-10 |  |  |  |  |  |  |  |  |  |  |  |  |  |  |
| MWH06.D6.C1.C1150 |  | Install additional Cable bus (DRB#3) |  | 1d | 2021-01-18 A | 2021-01-19 A | MWH06.C1.C1360, MWH06.D6.S1030, MWH06-9931 | 100% | 2021-02-13 | 2021-02-13 |  |  | VECA Electric [50 h] | 1 | 1 | 6 | 2 | 3 | 4 | 1 |
| MWH06-10233 |  | Install MER Supply duct |  | 5d | 2021-02-01 A | 2021-02-05 A | MWH06-9931, MWH06-9931 FF | 100% | 2021-03-01 | 2021-03-05 |  |  |  | 1 | 1 | 6 |  |  |  |  |
| MWH06.D6.C1.C1140 |  | Install Roxtec blocks and Install tray/conduit from Roxtec to MER (DRB#3) |  | 4d | 2021-02-08 A | 2021-02-13 A | MWH06.D6.C1.C1130, MWH06.C1.C1250, MWH06-9931, MWH06-10149, MWH06-10233 | 100% | 2021-03-06 | 2021-03-10 |  |  | VECA Electric [80 h] | 1 | 1 | 6 | 1 | 3 | 4 |  |
| MWH06.D6.C1.C1170 |  | Install additional Cable bus feeder (DRB#3) |  | 1d | 2021-02-08 A | 2021-02-13 A | MWH06.C1.C1420, MWH06-9931 | 100% | 2021-03-05 | 2021-03-05 |  |  | VECA Electric [20 h] | 1 | 1 | 6 | 2 | 3 | 4 | 1 |
| MWH06.D6.C1.C1160 |  | Install additional Electrical Feeders for Mech equipment additional Term (DRB#3) |  | 1d | 2021-03-19 A | 2021-03-19 A | MWH06.C1.C1410, MWH06-9931 | 100% | 2021-03-31 | 2021-03-31 |  |  | VECA Electric [20 h] | 1 | 1 | 6 | 2 | 3 | 4 |  |
| MWH06.D6.C1.C1180 |  | Install Roxtec block sealing and install added tray cable (DRB#3) |  | 6d | 2021-05-04 A | 2021-05-10 A | MWH06-10471, MWH06.C1.C1400, MWH06.D6.C1.C1140, MWH06.C1.C1410, MWH06-9931, MWH06-10531, MWH06-10530 | 100% | 2021-06-01 | 2021-06-07 |  |  | VECA Electric [120 h] | 1 | 1 | 6 | 1 | 3 | 4 |  |
|  | 4 | **COLO-1 CEll-3** |  |  | 2020-11-16 | 2021-05-28 |  |  |  |  |  |  |  |  |  |  |  |  |  |  |
|  | 2 | **Insterior Systems Build-out** |  |  | 2020-11-16 | 2021-01-23 |  |  |  |  |  |  |  |  |  |  |  |  |  |  |
| MWH06.D6.C1.C3110 |  | Sure steel - PEMB MER penetration framing |  | 4d | 2020-11-16 A | 2020-11-18 A | MWH06.D6.S1040, MWH06.D6.C1.C1110 | 100% | 2020-11-30 | 2020-12-03 |  |  | Steel [40 h] | 1 | 3 | 6 | 2 |  |  |  |
| MWH06.D6.C1.C3120 |  | Wall Penetration installation rough-in (Install Roxtec frame) (DRB#3) |  | 1d | 2020-12-21 A | 2020-12-22 A | MWH06.D6.C1.C3110, MWH06.D6.S1000 | 100% | 2021-01-02 | 2021-01-02 |  |  | VECA Electric [20 h] | 1 | 3 | 6 | 2 | 3 | 4 |  |
| MWH06.D6.C1.C3130 |  | Install added DRB#3 Tray and conduit |  | 3d | 2021-01-15 A | 2021-01-23 A | MWH06.D6.C1.C3120, MWH06-9932 | 100% | 2021-02-08 | 2021-02-11 |  |  | VECA Electric [60 h] | 1 | 3 | 6 | 2 | 3 | 4 |  |

| ID | WBS | Activity | Duration | Start | Finish | Predecessors | Complete | Planned start | Planned finish | Resources | HRA - Safety Level | COLO | CELL | DELAY | Critical Path mer to COLO | HRA - Required Permit- Priority-1 | HRA - Required Permit- Priority-2 |
| --- | --- | --- | --- | --- | --- | --- | --- | --- | --- | --- | --- | --- | --- | --- | --- | --- | --- |
|  | 1 | **Exterior Systmes Build-out** |  | 2021-01-25 | 2021-05-28 |  |  |  |  |  |  |  |  |  |  |  |  |
| MWH06-10234 |  | Install MER Supply duct | 5d | 2021-01-25 A | 2021-01-29 A | MWH06-9932 | 100% | 2021-03-01 | 2021-03-05 | VECA Electric [20 h] | 2 | 1 | 3 | 6 | 1 | 3 | 4 |
| MWH06.D6.C1.C3150 |  | Install additional Cable bus (DRB#3) | 1d | 2021-01-25 A | 2021-01-26 A | MWH06.C1.C3350, MWH06.D6.S1030, MWH06-9932 | 100% | 2021-03-01 | 2021-03-01 |  | 2 | 1 | 3 | 6 | 1 | 3 | 4 |
| MWH06.D6.C1.C3140 |  | Install Roxtec blocks and Install tray/conduit from Roxtec to MER (DRB#3) | 4d | 2021-02-01 A | 2021-02-04 A | MWH06.D6.C1.C3130, MWH06.C1.C3210, MWH06-9932, MWH06-10170, MWH06-10234 | 100% | 2021-03-06 | 2021-03-10 | VECA Electric [80 h] | 1 | 1 | 3 | 6 |  | 3 | 4 |
| MWH06.D6.C1.C3170 |  | Install additional Cable bus feeder (DRB#3) | 1d | 2021-02-15 A | 2021-02-16 A | MWH06.C1.C3410, MWH06-9932, MWH06-10366 | 100% | 2021-03-02 | 2021-03-02 | VECA Electric [20 h] | 2 | 1 | 3 | 6 | 1 | 3 | 4 |
| MWH06.D6.C1.C3160 |  | Install additional Electrical Feeders for Mech equipment additional Term (DRB#3) | 1d | 2021-03-31 A | 2021-03-31 A | MWH06.C1.C3390, MWH06-9932 | 100% |  |  | VECA Electric [20 h] | 2 | 1 | 3 | 6 |  | 3 | 4 |
| MWH06.D6.C1.C3180 |  | Install Roxtec block sealing and install added tray cable (DRB#3) | 6d | 2021-05-21 A | 2021-05-28 A | MWH06-10473, MWH06.D6.C1.C3140, MWH06.C1.C3360, MWH06.C1.C3390, MWH06-9932, MWH06-10531, MWH06-10530 | 100% | 2021-06-01 | 2021-06-07 | VECA Electric [120 h] | 1 | 1 | 3 | 6 |  | 3 | 4 |
|  | 3 | **COLO-1 CEll-2** |  | 2020-11-16 | 2021-05-18 |  |  |  |  |  |  |  |  |  |  |  |  |
|  | 2 | **Insterior Systems Build-out** |  | 2020-11-16 | 2021-01-08 |  |  |  |  |  |  |  |  |  |  |  |  |
| MWH06.D6.C1.C2110 |  | Sure steel - PEMB MER penetration framing | 4d | 2020-11-16 A | 2020-11-18 A | MWH06.D6.S1040 | 100% | 2020-11-30 | 2020-12-03 | Steel [40 h] | 2 | 1 | 2 | 6 |  |  |  |
| MWH06.D6.C1.C2120 |  | Wall Penetration installation rough-in (Install Roxtec frame) (DRB#3) | 1d | 2020-12-14 A | 2020-12-15 A | MWH06.D6.C1.C2110, MWH06.D6.S1000 | 100% | 2021-03-01 | 2021-03-01 | VECA Electric [20 h] | 2 | 1 | 2 | 6 |  | 3 | 4 |
| MWH06.D6.C1.C2130 |  | Install added DRB#3 Tray and conduit | 3d | 2021-01-04 A | 2021-01-08 A | MWH06.D6.C1.C2120, MWH06-9933 | 100% | 2021-03-02 | 2021-03-04 | VECA Electric [60 h] | 2 | 1 | 2 | 6 |  | 3 | 4 |
|  | 1 | **Exterior Systmes Build-out** |  | 2021-01-18 | 2021-05-18 |  |  |  |  |  |  |  |  |  |  |  |  |
| MWH06-10235 |  | Install MER Supply duct | 5d | 2021-01-18 A | 2021-01-23 A | MWH06-9933 | 100% | 2021-03-01 | 2021-03-05 | VECA Electric [20 h] | 2 | 1 | 2 | 6 | 1 | 3 | 4 |
| MWH06.D6.C1.C2150 |  | Install additional Cable bus (DRB#3) | 1d | 2021-01-20 A | 2021-01-21 A | MWH06.C1.C2390, MWH06.D6.S1030, MWH06-9933 | 100% | 2021-03-01 | 2021-03-01 |  | 2 | 1 | 2 | 6 | 1 | 3 | 4 |
| MWH06.D6.C1.C2140 |  | Install Roxtec blocks and Install tray/conduit from Roxtec to MER (DRB#3) | 4d | 2021-01-25 A | 2021-02-05 A | MWH06.D6.C1.C2130, MWH06.C1.C2270, MWH06-9933, MWH06-10174, MWH06-10235 | 100% | 2021-03-06 | 2021-03-10 | VECA Electric [80 h] | 1 | 1 | 2 | 6 |  | 3 | 4 |
| MWH06.D6.C1.C2170 |  | Install additional Cable bus feeder (DRB#3) | 1d | 2021-02-08 A | 2021-02-13 A | MWH06.C1.C2430 FF+1d, MWH06-9933 | 100% | 2021-03-06 | 2021-03-06 | VECA Electric [20 h] | 2 | 1 | 2 | 6 | 1 | 3 | 4 |
| MWH06.D6.C1.C2160 |  | Install additional Electrical Feeders for Mech equipment additional Term (DRB#3) | 1d | 2021-03-19 A | 2021-03-19 A | MWH06.C1.C2420, MWH06-9933 | 100% | 2021-03-31 | 2021-03-31 | VECA Electric [20 h] | 2 | 1 | 2 | 6 |  | 3 | 4 |
| MWH06.D6.C1.C2180 |  | Install Roxtec block sealing and install added tray cable (DRB#3) | 6d | 2021-05-12 A | 2021-05-18 A | MWH06-10472, MWH06.D6.C1.C2140, MWH06.C1.C2380, MWH06.C1.C2420, MWH06-9933, MWH06-10531, MWH06-10530 | 100% | 2021-06-01 | 2021-06-07 | VECA Electric [120 h] | 1 | 1 | 2 | 6 |  | 3 | 4 |
|  | 5 | **COLO-1 CEll-4** |  | 2020-11-16 | 2021-05-28 |  |  |  |  |  |  |  |  |  |  |  |  |
|  | 2 | **Insterior Systems Build-out** |  | 2020-11-16 | 2021-01-23 |  |  |  |  |  |  |  |  |  |  |  |  |
| MWH06.D6.C1.C4110 |  | Sure steel - PEMB MER penetration framing | 4d | 2020-11-16 A | 2020-11-18 A | MWH06.D6.S1040, MWH06.D6.C1.C2110 | 100% | 2020-12-04 | 2020-12-09 | Steel [40 h] | 2 | 1 | 4 | 6 |  |  |  |
| MWH06.D6.C1.C4130 |  | Install added DRB#3 Tray and conduit | 3d | 2021-01-15 A | 2021-01-23 A | MWH06.D6.C1.C4120, MWH06-9934 | 100% | 2021-03-02 | 2021-03-04 | VECA Electric [60 h] | 2 | 1 | 4 | 6 |  | 3 | 4 |
| MWH06.D6.C1.C4120 |  | Wall Penetration installation rough-in (Install Roxtec frame) (DRB#3) | 1d | 2021-01-21 A | 2021-01-22 A | MWH06.D6.C1.C4110, MWH06.D6.S1000 | 100% | 2021-03-01 | 2021-03-01 | VECA Electric [20 h] | 2 | 1 | 4 | 6 |  | 3 | 4 |

| ID | WBS | Activity | Duration | Start | Finish | Predecessors | Complete | Planned start | Planned finish | Resources | HRA - Safety Level | COLO | CELL | DELAY | Critical Path mer to COLO | HRA - Required Permit- Priority-1 | HRA - Required Permit- Priority-2 | WBS |
| --- | --- | --- | --- | --- | --- | --- | --- | --- | --- | --- | --- | --- | --- | --- | --- | --- | --- | --- |
|  | 1 | **Exterior Systmes Build-out** |  | 2021-02-04 | 2021-05-28 |  |  |  |  |  |  |  |  |  |  |  |  |  |
| MWH06-10236 |  | Install MER Supply duct | 5d | 2021-02-04 A | 2021-02-06 A | MWH06-9934 | 100% | 2021-03-01 | 2021-03-05 | VECA Electric [20 h] | 2 | 1 | 4 | 6 | 1 | 3 | 4 |  |
| MWH06.D6.C1.C4150 |  | Install additional Cable bus (DRB#3) | 1d | 2021-02-05 A | 2021-02-06 A | MWH06.C1.C4370, MWH06.D6.S1030, MWH06-9934 | 100% | 2021-03-03 | 2021-03-03 |  | 2 | 1 | 4 | 6 | 1 | 3 | 4 |  |
| MWH06.D6.C1.C4170 |  | Install additional Cable bus feeder (DRB#3) | 1d | 2021-02-15 A | 2021-02-16 A | MWH06.C1.C4440, MWH06-9934 | 100% | 2021-03-04 | 2021-03-04 | VECA Electric [20 h] | 2 | 1 | 4 | 6 | 1 | 3 | 4 |  |
| MWH06.D6.C1.C4140 |  | Install Roxtec blocks and Install tray/conduit from Roxtec to MER (DRB#3) | 4d | 2021-02-22 A | 2021-02-27 A | MWH06.D6.C1.C4130, MWH06.C1.C4270, MWH06-9934, MWH06-10178, MWH06-10236 | 100% | 2021-03-01 | 2021-03-04 | VECA Electric [80 h] | 1 | 1 | 4 | 6 |  | 3 | 4 |  |
| MWH06.D6.C1.C4160 |  | Install additional Electrical Feeders for Mech equipment additional Term (DRB#3) | 1d | 2021-03-31 A | 2021-03-31 A | MWH06.C1.C4410, MWH06-9934 | 100% |  |  | VECA Electric [20 h] | 2 | 1 | 4 | 6 |  | 3 | 4 |  |
| MWH06.D6.C1.C4180 |  | Install Roxtec block sealing and install added tray cable (DRB#3) | 6d | 2021-05-24 A | 2021-05-28 A | MWH06-10474, MWH06.D6.C1.C4140, MWH06.C1.C4360, MWH06.C1.C4410, MWH06-9934, MWH06-10531, MWH06-10530 | 100% | 2021-06-07 | 2021-06-14 | VECA Electric [120 h] | 1 | 1 | 4 | 6 |  | 3 | 4 |  |
|  | 1 | **COLO-1 ADP01 & ADP02 Equipment Shift** |  | 2021-03-09 | 2021-04-13 |  |  |  |  |  |  |  |  |  |  |  |  |  |
| MWH06-10383 |  | COLO-1 Cell-1 Late start to Pulling PDU Feeders due to Space constraint in MER (ADP in front of MSB) | 14d | 2021-03-09 A | 2021-03-18 A | MWH06.C1.C1410 FF | 100% | 2021-03-22 | 2021-04-06 |  |  | 1 | 1 |  |  |  |  |  |
| MWH06-10385 |  | COLO-1 Cell-2 Late start to Pulling PDU Feeders due to Space constraint in MER (ADP in front of MSB) | 14d | 2021-03-09 A | 2021-03-18 A | MWH06.C1.C2420 FF | 100% | 2021-03-31 | 2021-04-16 |  |  | 1 | 2 |  |  |  |  |  |
| MWH06-10384 |  | COLO-1 Cell-3 Late start to Pulling PDU Feeders due to Space constraint in MER (ADP in front of MSB) | 14d | 2021-03-15 A | 2021-03-31 A | MWH06.C1.C3390 FF | 100% | 2021-04-05 | 2021-04-21 |  |  | 1 | 3 |  |  |  |  |  |
| MWH06-10386 |  | COLO-1 Cell-4 Late start to Pulling PDU Feeders due to Space constraint in MER (ADP in front of MSB) | 14d | 2021-03-29 A | 2021-04-13 A | MWH06.C1.C4410 FF | 100% | 2021-03-31 | 2021-04-16 |  |  | 1 | 4 |  |  |  |  | 3 |
|  | 2 | **COLO-2** |  | 2021-01-02 | 2021-07-01 |  |  |  |  |  |  |  |  |  |  |  |  |  |
|  | 2 | **COLO-2 CEll-1** |  | 2021-01-02 | 2021-06-23 |  |  |  |  |  |  |  |  |  |  |  |  |  |
|  | 2 | **Insterior Systems Build-out** |  | 2021-01-02 | 2021-02-11 |  |  |  |  |  |  |  |  |  |  |  |  |  |
| MWH06.D6.C2.C1100 |  | Sure steel - PEMB MER penetration framing | 4d | 2021-01-02 A | 2021-01-06 A | MWH06.D6.S1040, MWH06.D6.C1.C3110 | 100% | 2021-02-01 | 2021-02-04 | Steel [40 h] | 2 | 2 | 1 | 6 |  | 3 | 4 |  |
| MWH06.D6.C2.C1110 |  | Wall Penetration installation rough-in (Install Roxtec frame) (DRB#3) | 1d | 2021-01-07 A | 2021-01-08 A | MWH06.D6.C2.C1100, MWH06.D6.S1000 | 100% | 2021-02-05 | 2021-02-05 | VECA Electric [20 h] | 2 | 2 | 1 | 6 |  | 3 | 4 |  |
| MWH06.D6.C2.C1120 |  | Install added DRB#3 Tray and conduit | 3d | 2021-02-06 A | 2021-02-11 A | MWH06.D6.C2.C1110, MWH06-9935 | 100% | 2021-03-01 | 2021-03-03 | VECA Electric [60 h] | 2 | 2 | 1 | 6 |  | 3 | 4 |  |
|  | 1 | **Exterior Systmes Build-out** |  | 2021-02-24 | 2021-06-23 |  |  |  |  |  |  |  |  |  |  |  |  |  |
| MWH06-10237 |  | Install MER Supply duct | 5d | 2021-02-24 A | 2021-03-03 A | MWH06-9935 | 100% | 2021-03-31 | 2021-04-05 | VECA Electric [20 h] | 2 | 2 | 1 | 6 | 2 | 3 | 4 |  |
| MWH06.D6.C2.C1130 |  | Install Roxtec blocks and Install tray/conduit from Roxtec to MER (DRB#3) | 4d | 2021-03-04 A | 2021-03-09 A | MWH06.D6.C2.C1120, MWH06.C2.C1250, MWH06-9935, MWH06-10237 | 100% | 2021-03-31 | 2021-04-03 | VECA Electric [80 h] | 1 | 2 | 1 | 6 |  | 3 | 4 |  |
| MWH06.D6.C2.C1150 |  | Install additional Cable bus (DRB#3) | 1d | 2021-03-13 A | 2021-03-13 A | MWH06.C2.C1380, MWH06.D6.S1030, MWH06-9935 | 100% | 2021-03-31 | 2021-03-31 |  | 2 | 2 | 1 | 6 | 2 | 3 | 4 |  |
| MWH06.D6.C2.C1160 |  | Install additional Cable bus feeder (DRB#3) | 1d | 2021-04-17 A | 2021-04-17 A | MWH06.C2.C1410, MWH06-9935 | 100% | 2021-04-30 | 2021-04-30 | VECA Electric [20 h] | 2 | 2 | 1 | 6 | 2 | 3 | 4 |  |
| MWH06.D6.C2.C1170 |  | Install additional Electrical Feeders for Mech equipment additional Term (DRB#3) | 1d | 2021-05-11 A | 2021-05-11 A | MWH06.C2.C1430, MWH06-9935, MWH06-10531, MWH06-10530 | 100% | 2021-06-02 | 2021-06-02 | VECA Electric [20 h] | 2 | 2 | 1 | 6 |  | 3 | 4 |  |
| MWH06.D6.C2.C1180 |  | Install Roxtec block sealing and install added tray cable (DRB#3) | 6d | 2021-06-17 A | 2021-06-23 A | MWH06.D6.C2.C1130, MWH06.C2.C1390, MWH06.C2.C1430, MWH06-9935, MWH06-10531, MWH06-10530 | 100% | 2021-06-30 | 2021-07-08 | VECA Electric [120 h] | 1 | 2 | 1 | 6 |  | 3 | 4 |  |

| ID | WBS | Activity | Duration | Start | Finish | Predecessors | Complete | Planned start | Planned finish | Resources | HRA - Safety Level | COLO | CELL | DELAY | HRA - Required Permit- Priority-1 | HRA - Required Permit- Priority-2 | Critical Path mer to COLO |
| --- | --- | --- | --- | --- | --- | --- | --- | --- | --- | --- | --- | --- | --- | --- | --- | --- | --- |
|  | 4 | **COLO-2 CEll-3** |  | 2021-01-07 | 2021-06-29 |  |  |  |  |  |  |  |  |  |  |  |  |
|  | 2 | **Insterior Systems Build-out** |  | 2021-01-07 | 2021-03-04 |  |  |  |  |  |  |  |  |  |  |  |  |
| MWH06.D6.C2.C3100 |  | Sure steel - PEMB MER penetration framing | 4d | 2021-01-07 A | 2021-01-11 A | MWH06.D6.S1040, MWH06.D6.C2.C1100 | 100% | 2021-02-05 | 2021-02-10 | Steel [40 h] | 2 | 2 | 3 | 6 | 3 | 4 |  |
| MWH06.D6.C2.C3110 |  | Wall Penetration installation rough-in (Install Roxtec frame) (DRB#3) | 1d | 2021-01-11 A | 2021-01-12 A | MWH06.D6.C2.C3100, MWH06.D6.S1000 | 100% | 2021-02-11 | 2021-02-11 | VECA Electric [20 h] | 2 | 2 | 3 | 6 | 3 | 4 |  |
| MWH06.D6.C2.C3120 |  | Install added DRB#3 Tray and conduit | 3d | 2021-02-27 A | 2021-03-04 A | MWH06.D6.C2.C3110, MWH06-9937 SS | 100% | 2021-03-26 | 2021-03-29 | VECA Electric [60 h] | 2 | 2 | 3 | 6 | 3 | 4 |  |
|  | 1 | **Exterior Systmes Build-out** |  | 2021-03-09 | 2021-06-29 |  |  |  |  |  |  |  |  |  |  |  |  |
| MWH06-10238 |  | Install MER Supply duct | 5d | 2021-03-09 A | 2021-03-09 A | MWH06-9937 | 100% | 2021-03-31 | 2021-04-05 | VECA Electric [20 h] | 2 | 2 | 3 | 6 | 3 | 4 | 2 |
| MWH06.D6.C2.C3150 |  | Install additional Cable bus (DRB#3) | 1d | 2021-03-25 A | 2021-03-25 A | MWH06.C2.C3340, MWH06.D6.S1030, MWH06-9937 | 100% | 2021-03-31 | 2021-03-31 |  | 2 | 2 | 3 | 6 | 3 | 4 | 2 |
| MWH06.D6.C2.C3130 |  | Install Roxtec blocks and Install tray/conduit from Roxtec to MER (DRB#3) | 4d | 2021-03-31 A | 2021-04-03 A | MWH06.D6.C2.C3120, MWH06.C2.C3230, MWH06-9937, MWH06-10238 | 100% |  |  | VECA Electric [80 h] | 1 | 2 | 3 | 6 | 3 | 4 |  |
| MWH06.D6.C2.C3160 |  | Install additional Cable bus feeder (DRB#3) | 1d | 2021-04-26 A | 2021-04-26 A | MWH06.C2.C3380, MWH06-9937 | 100% | 2021-04-30 | 2021-04-30 | VECA Electric [20 h] | 2 | 2 | 3 | 6 | 3 | 4 | 2 |
| MWH06.D6.C2.C3170 |  | Install additional Electrical Feeders for Mech equipment additional Term (DRB#3) | 1d | 2021-05-26 A | 2021-05-26 A | MWH06.C2.C3430, MWH06-9937, MWH06-10531, MWH06-10530 | 100% | 2021-06-02 | 2021-06-02 | VECA Electric [20 h] | 2 | 2 | 3 | 6 | 3 | 4 |  |
| MWH06.D6.C2.C3180 |  | Install Roxtec block sealing and install added tray cable (DRB#3) | 6d | 2021-06-22 A | 2021-06-29 A | MWH06.D6.C2.C3130, MWH06.C2.C3360, MWH06.C2.C3430, MWH06-9937, MWH06-10531, MWH06-10530 | 100% | 2021-06-30 | 2021-07-08 | VECA Electric [120 h] | 1 | 2 | 3 | 6 | 3 | 4 |  |
|  | 3 | **COLO-2 CEll-2** |  | 2021-01-04 | 2021-06-26 |  |  |  |  |  |  |  |  |  |  |  |  |
|  | 2 | **Insterior Systems Build-out** |  | 2021-01-04 | 2021-03-09 |  |  |  |  |  |  |  |  |  |  |  |  |
| MWH06.D6.C2.C2100 |  | Sure steel - PEMB MER penetration framing | 4d | 2021-01-04 A | 2021-01-08 A | MWH06.D6.S1040, MWH06.D6.C1.C4110 | 100% | 2021-02-01 | 2021-02-04 | Steel [40 h] | 2 | 2 | 2 | 6 | 3 | 4 |  |
| MWH06.D6.C2.C2110 |  | Wall Penetration installation rough-in (Install Roxtec frame) (DRB#3) | 1d | 2021-01-08 A | 2021-01-09 A | MWH06.D6.C2.C2100, MWH06.D6.S1000 | 100% | 2021-02-05 | 2021-02-05 | VECA Electric [20 h] | 2 | 2 | 2 | 6 | 3 | 4 |  |
| MWH06.D6.C2.C2120 |  | Install added DRB#3 Tray and conduit | 3d | 2021-03-01 A | 2021-03-09 A | MWH06.D6.C2.C2110, MWH06-9936 SS | 100% | 2021-03-31 | 2021-04-02 | VECA Electric | 2 | 2 | 2 | 6 | 3 | 4 |  |
|  | 1 | **Exterior Systmes Build-out** |  | 2021-03-22 | 2021-06-26 |  |  |  |  |  |  |  |  |  |  |  |  |
| MWH06-10239 |  | Install MER Supply duct | 5d | 2021-03-22 A | 2021-03-27 A | MWH06-9936 | 100% | 2021-03-31 | 2021-04-05 | VECA Electric [20 h] | 2 | 2 | 2 | 6 | 3 | 4 | 2 |
| MWH06.D6.C2.C2130 |  | Install Roxtec blocks and Install tray/conduit from Roxtec to MER (DRB#3) | 4d | 2021-03-30 A | 2021-04-05 A | MWH06.D6.C2.C2120, MWH06.C2.C2290, MWH06-9936, MWH06-10239 | 100% | 2021-03-31 | 2021-04-03 | VECA Electric [80 h] | 1 | 2 | 2 | 6 | 3 | 4 |  |
| MWH06.D6.C2.C2150 |  | Install additional Cable bus (DRB#3) | 1d | 2021-04-01 A | 2021-04-01 A | MWH06.C2.C2370, MWH06.D6.S1030, MWH06-9936 | 100% | 2021-05-03 | 2021-05-03 |  | 2 | 2 | 2 | 6 | 3 | 4 | 2 |
| MWH06.D6.C2.C2170 |  | Install additional Cable bus feeder (DRB#3) | 1d | 2021-04-17 A | 2021-04-17 A | MWH06.C2.C2420, MWH06-9936 | 100% | 2021-05-04 | 2021-05-04 | VECA Electric [20 h] | 2 | 2 | 2 | 6 | 3 | 4 | 2 |
| MWH06.D6.C2.C2160 |  | Install additional Electrical Feeders for Mech equipment additional Term (DRB#3) | 1d | 2021-05-11 A | 2021-05-11 A | MWH06.C2.C2410, MWH06-9936, MWH06-10531, MWH06-10530 | 100% | 2021-06-02 | 2021-06-02 | VECA Electric [20 h] | 2 | 2 | 2 | 6 | 3 | 4 |  |
| MWH06.D6.C2.C2180 |  | Install Roxtec block sealing and install added tray cable (DRB#3) | 6d | 2021-06-18 A | 2021-06-26 A | MWH06.D6.C2.C2130, MWH06.C2.C2380, MWH06.C2.C2410, MWH06-9936, MWH06-10531, MWH06-10530 | 100% | 2021-06-30 | 2021-07-08 | VECA Electric [120 h] | 1 | 2 | 2 | 6 | 3 | 4 |  |

| ID | WBS | Activity | Duration | Start | Finish | Predecessors | Complete | Planned start | Planned finish | Resources | HRA - Safety Level | COLO | CELL | DELAY | HRA - Required Permit- Priority-1 | HRA - Required Permit- Priority-2 | Critical Path mer to COLO | COLO CRITICAL | WBS |
| --- | --- | --- | --- | --- | --- | --- | --- | --- | --- | --- | --- | --- | --- | --- | --- | --- | --- | --- | --- |
|  | 5 | **COLO-2 CEll-4** |  | 2021-01-07 | 2021-07-01 |  |  |  |  |  |  |  |  |  |  |  |  |  |  |
|  | 2 | **Insterior Systems Build-out** |  | 2021-01-07 | 2021-03-24 |  |  |  |  |  |  |  |  |  |  |  |  |  |  |
| MWH06.D6.C2.C4100 |  | Sure steel - PEMB MER penetration framing | 4d | 2021-01-07 A | 2021-01-11 A | MWH06.D6.S1040, MWH06.D6.C2.C2100 | 100% | 2021-02-05 | 2021-02-10 | Steel [40 h] | 2 | 2 | 4 | 6 | 3 | 4 |  |  |  |
| MWH06.D6.C2.C4110 |  | Wall Penetration installation rough-in (Install Roxtec frame) (DRB#3) | 1d | 2021-01-11 A | 2021-01-12 A | MWH06.D6.C2.C4100, MWH06.D6.S1000 | 100% | 2021-02-11 | 2021-02-11 | VECA Electric [20 h] | 2 | 2 | 4 | 6 | 3 | 4 |  |  |  |
| MWH06.D6.C2.C4120 |  | Install added DRB#3 Tray and conduit | 3d | 2021-03-19 A | 2021-03-24 A | MWH06.D6.C2.C4110, MWH06-9938 | 100% | 2021-04-02 | 2021-04-05 | VECA Electric [60 h] | 2 | 2 | 4 | 6 | 3 | 4 |  |  |  |
|  | 1 | **Exterior Systmes Build-out** |  | 2021-03-10 | 2021-07-01 |  |  |  |  |  |  |  |  |  |  |  |  |  |  |
| MWH06-10240 |  | Install MER Supply duct | 5d | 2021-03-10 A | 2021-03-15 A | MWH06-9938 | 100% | 2021-04-30 | 2021-05-06 | VECA Electric [20 h] | 2 | 2 | 4 | 6 | 3 | 4 | 2 |  |  |
| MWH06.D6.C2.C4130 |  | Install Roxtec blocks and Install tray/conduit from Roxtec to MER (DRB#3) | 4d | 2021-04-02 A | 2021-04-07 A | MWH06.D6.C2.C4120, MWH06.C2.C4220, MWH06-9938, MWH06-10240 | 100% | 2021-05-07 | 2021-05-11 | VECA Electric [80 h] | 1 | 2 | 4 | 6 | 3 | 4 |  |  |  |
| MWH06.D6.C2.C4150 |  | Install additional Cable bus (DRB#3) | 1d | 2021-04-09 A | 2021-04-09 A | MWH06.C2.C4310, MWH06.D6.S1030, MWH06-9938 | 100% | 2021-04-30 | 2021-04-30 |  | 2 | 2 | 4 | 6 | 3 | 4 | 2 | 2,3,4 |  |
| MWH06.D6.C2.C4160 |  | Install additional Cable bus feeder (DRB#3) | 1d | 2021-04-30 A | 2021-04-30 A | MWH06.C2.C4370 SS, MWH06-9938 | 100% | 2021-05-04 | 2021-05-04 | VECA Electric [20 h] | 2 | 2 | 4 | 6 | 3 | 4 | 2 | 2,3,4 |  |
| MWH06.D6.C2.C4170 |  | Install additional Electrical Feeders for Mech equipment additional Term (DRB#3) | 1d | 2021-05-25 A | 2021-05-25 A | MWH06.C2.C4380, MWH06-9938, MWH06-10531, MWH06-10530 | 100% | 2021-06-08 | 2021-06-08 | VECA Electric [20 h] | 2 | 2 | 4 | 6 | 3 | 4 |  |  |  |
| MWH06.D6.C2.C4180 |  | Install Roxtec block sealing and install added tray cable (DRB#3) | 6d | 2021-06-25 A | 2021-07-01 A | MWH06.D6.C2.C4130, MWH06.C2.C4320, MWH06.C2.C4380, MWH06-9938, MWH06-10531, MWH06-10530 | 100% | 2021-06-30 | 2021-07-08 | VECA Electric [120 h] | 1 | 2 | 4 | 6 | 3 | 4 |  | 2,3,4 | 5 |
|  | 8 | **COLO-2 ADP01 & ADP02 Equipment Shift** |  | 2021-04-23 | 2021-05-25 |  |  |  |  |  |  |  |  |  |  |  |  |  |  |
| MWH06-10393 |  | COLO-2 Cell-1 Late start to Pulling PDU Feeders due to Space constraint in MER (ADP in front of MSB) | 14d | 2021-04-23 A | 2021-05-10 A | MWH06.C2.C1430 FF, MWH06-10530 | 100% | 2021-04-30 | 2021-05-17 |  |  | 2 | 1 |  |  |  |  |  |  |
| MWH06-10396 |  | COLO-2 Cell-2 Late start to Pulling PDU Feeders due to Space constraint in MER (ADP in front of MSB) | 14d | 2021-04-26 A | 2021-05-10 A | MWH06.C2.C2410 FF | 100% | 2021-05-17 | 2021-06-03 |  |  | 2 | 2 |  |  |  |  |  |  |
| MWH06-10394 |  | COLO-2 Cell-3 Late start to Pulling PDU Feeders due to Space constraint in MER (ADP in front of MSB) | 14d | 2021-05-03 A | 2021-05-25 A | MWH06.C2.C3430 FF | 100% | 2021-05-17 | 2021-06-03 |  |  | 2 | 3 |  |  |  |  |  |  |
| MWH06-10395 |  | COLO-2 Cell-4 Late start to Pulling PDU Feeders due to Space constraint in MER (ADP in front of MSB) | 14d | 2021-05-03 A | 2021-05-24 A | MWH06.C2.C4380 FF | 100% | 2021-05-03 | 2021-05-18 |  |  | 2 | 4 |  |  |  |  |  | 3 |
|  | 3 | **COLO-3** |  | 2021-01-11 | 2021-08-26 |  |  |  |  |  |  |  |  |  |  |  |  |  |  |
|  | 2 | **COLO-3 CEll-1** |  | 2021-01-11 | 2021-07-27 |  |  |  |  |  |  |  |  |  |  |  |  |  |  |
|  | 2 | **Insterior Systems Build-out** |  | 2021-01-11 | 2021-04-23 |  |  |  |  |  |  |  |  |  |  |  |  |  |  |
| MWH06.D6.C3.C1100 |  | Sure steel - PEMB MER penetration framing | 4d | 2021-01-11 A | 2021-01-15 A | MWH06.D6.S1040, MWH06.D6.C2.C3100 | 100% | 2021-02-01 | 2021-02-04 | Steel [40 h] | 2 | 3 | 1 | 6 | 3 | 4 |  |  |  |
| MWH06.D6.C3.C1110 |  | Wall Penetration installation rough-in (Install Roxtec frame) (DRB#3) | 1d | 2021-02-15 A | 2021-02-17 A | MWH06.D6.C3.C1100, MWH06.D6.S1000 | 100% | 2021-03-01 | 2021-03-01 | VECA Electric [20 h] | 2 | 3 | 1 | 6 | 3 | 4 |  |  |  |
| MWH06.D6.C3.C1120 |  | Install added DRB#3 Tray and conduit | 3d | 2021-04-20 A | 2021-04-23 A | MWH06.D6.C3.C1110, MWH06-9939 | 100% | 2021-04-30 | 2021-05-04 | VECA Electric [60 h] | 2 | 3 | 1 | 6 | 3 | 4 |  |  |  |
|  | 1 | **Exterior Systmes Build-out** |  | 2021-04-20 | 2021-07-27 |  |  |  |  |  |  |  |  |  |  |  |  |  |  |
| MWH06-10241 |  | Install MER Supply duct | 5d | 2021-04-20 A | 2021-04-24 A | MWH06-9939 | 100% | 2021-04-30 | 2021-05-06 | VECA Electric [20 h] | 2 | 3 | 1 | 6 | 3 | 4 | 3 |  |  |
| MWH06.D6.C3.C1130 |  | Install Roxtec blocks and Install tray/conduit from Roxtec to MER (DRB#3) | 4d | 2021-04-30 A | 2021-05-05 A | MWH06.D6.C3.C1120, MWH06.C3.C1230, MWH06-9939, MWH06-10241, MWH06-10531, MWH06-10530 | 100% | 2021-06-01 | 2021-06-04 | VECA Electric [80 h] | 1 | 3 | 1 | 6 | 3 | 4 |  |  |  |
| MWH06.D6.C3.C1150 |  | Install additional Cable bus (DRB#3) | 1d | 2021-05-03 A | 2021-05-03 A | MWH06.C3.C1320, MWH06.D6.S1030, MWH06-9939 | 100% | 2021-05-18 | 2021-05-18 |  | 2 | 3 | 1 | 6 | 3 | 4 | 3 |  |  |
| MWH06.D6.C3.C1180 |  | Install additional Cable bus feeder (DRB#3) | 1d | 2021-06-01 A | 2021-06-02 A | MWH06.C3.C1380, MWH06-9939, MWH06-10531, MWH06-10530 | 100% | 2021-06-01 | 2021-06-01 | VECA Electric [20 h] | 2 | 3 | 1 | 6 | 3 | 4 | 3 |  |  |
| MWH06.D6.C3.C1170 |  | Install additional Electrical Feeders for Mech equipment additional Term (DRB#3) | 1d | 2021-06-21 A | 2021-06-21 A | MWH06.C3.C1360, MWH06-9939, MWH06-10531, MWH06-10530 | 100% | 2021-06-30 | 2021-06-30 | VECA Electric [20 h] | 2 | 3 | 1 | 6 | 3 | 4 |  |  |  |
| MWH06.D6.C3.C1140 |  | Install Roxtec block sealing and Install added tray cable (DRB#3) | 6d | 2021-07-20 A | 2021-07-27 A | MWH06-10462 FF+8d, MWH06.D6.C3.C1130, MWH06.C3.C1360, MWH06-9939, MWH06-10531, MWH06-10530, MWH06.C3.C1430 | 100% | 2021-08-17 | 2021-08-23 | VECA Electric [120 h] | 1 | 3 | 1 | 6 | 3 | 4 |  |  |  |

| ID | WBS | Activity | Duration | Start | Finish | Predecessors | Complete | Planned start | Planned finish | Resources | HRA - Safety Level | COLO | CELL | DELAY | HRA - Required Permit- Priority-1 | HRA - Required Permit- Priority-2 | Critical Path mer to COLO |
| --- | --- | --- | --- | --- | --- | --- | --- | --- | --- | --- | --- | --- | --- | --- | --- | --- | --- |
|  | 4 | **COLO-3 CEll-3** |  | 2021-01-11 | 2021-08-26 |  |  |  |  |  |  |  |  |  |  |  |  |
|  | 2 | **Insterior Systems Build-out** |  | 2021-01-11 | 2021-05-07 |  |  |  |  |  |  |  |  |  |  |  |  |
| MWH06.D6.C3.C3100 |  | Sure steel - PEMB MER penetration framing | 4d | 2021-01-11 A | 2021-01-15 A | MWH06.D6.S1040, MWH06.D6.C3.C1100 | 100% | 2021-02-05 | 2021-02-10 | Steel [40 h] | 2 | 3 | 3 | 6 | 3 | 4 |  |
| MWH06.D6.C3.C3110 |  | Wall Penetration installation rough-in (Install Roxtec frame) (DRB#3) | 1d | 2021-02-15 A | 2021-02-17 A | MWH06.D6.C3.C3100, MWH06.D6.S1000 | 100% | 2021-03-01 | 2021-03-01 | VECA Electric [20 h] | 2 | 3 | 3 | 6 | 3 | 4 |  |
| MWH06.D6.C3.C3120 |  | Install added DRB#3 Tray and conduit | 3d | 2021-05-04 A | 2021-05-07 A | MWH06.D6.C3.C3110, MWH06-9941, MWH06-10531, MWH06-10530 | 100% | 2021-06-01 | 2021-06-03 | VECA Electric [60 h] | 2 | 3 | 3 | 6 | 3 | 4 |  |
|  | 1 | **Exterior Systmes Build-out** |  | 2021-04-22 | 2021-08-26 |  |  |  |  |  |  |  |  |  |  |  |  |
| MWH06-10242 |  | Install MER Supply duct | 5d | 2021-04-22 A | 2021-04-26 A | MWH06-9941 | 100% | 2021-05-24 | 2021-05-28 | VECA Electric [20 h] | 2 | 3 | 3 | 6 | 3 | 4 | 3 |
| MWH06.D6.C3.C3130 |  | Install Roxtec blocks and Install tray/conduit from Roxtec to MER (DRB#3) | 4d | 2021-04-27 A | 2021-05-03 A | MWH06.D6.C3.C3120, MWH06.C3.C3200, MWH06-9941, MWH06-10242, MWH06-10531, MWH06-10530 | 100% | 2021-06-01 | 2021-06-04 | VECA Electric [80 h] | 1 | 3 | 3 | 6 | 3 | 4 |  |
| MWH06.D6.C3.C3140 |  | Install additional Cable bus (DRB#3) | 1d | 2021-05-31 A | 2021-05-31 A | MWH06.C3.C3280, MWH06.D6.S1030, MWH06-9941, MWH06-10530 | 100% | 2021-06-01 | 2021-06-01 |  | 2 | 3 | 3 | 6 | 3 | 4 | 3 |
| MWH06.D6.C3.C3150 |  | Install additional Cable bus feeder (DRB#3) | 1d | 2021-06-14 A | 2021-06-14 A | MWH06.C3.C3330, MWH06-9941, MWH06-10531, MWH06-10530 | 100% | 2021-07-02 | 2021-07-02 | VECA Electric [20 h] | 2 | 3 | 3 | 6 | 3 | 4 | 3 |
| MWH06.D6.C3.C3170 |  | Install additional Electrical Feeders for Mech equipment additional Term (DRB#3) | 1d | 2021-08-14 A | 2021-08-14 A | MWH06.C3.C3350, MWH06-9941, MWH06-10531, MWH06-10530 | 100% | 2021-08-31 | 2021-08-31 | VECA Electric [20 h] | 2 | 3 | 3 | 6 | 3 | 4 |  |
| MWH06.D6.C3.C3180 |  | Install Roxtec block sealing and install added tray cable (DRB#3) | 6d | 2021-08-20 A | 2021-08-26 A | MWH06-10464 FF+8d, MWH06.D6.C3.C3130, MWH06.C3.C3390, MWH06.C3.C3350, MWH06-9941, MWH06-10531, MWH06-10530 | 100% | 2021-09-03 | 2021-09-11 | VECA Electric [120 h] | 1 | 3 | 3 | 6 | 3 | 4 |  |
|  | 3 | **COLO-3 CEll-2** |  | 2021-01-11 | 2021-07-28 |  |  |  |  |  |  |  |  |  |  |  |  |
|  | 2 | **Insterior Systems Build-out** |  | 2021-01-11 | 2021-05-03 |  |  |  |  |  |  |  |  |  |  |  |  |
| MWH06.D6.C3.C2100 |  | Sure steel - PEMB MER penetration framing | 4d | 2021-01-11 A | 2021-01-15 A | MWH06.D6.S1040, MWH06.D6.C2.C4100 | 100% | 2021-02-01 | 2021-02-04 | Steel [40 h] | 2 | 3 | 2 | 6 | 3 | 4 |  |
| MWH06.D6.C3.C2110 |  | Wall Penetration installation rough-in (Install Roxtec frame) (DRB#3) | 1d | 2021-01-25 A | 2021-01-27 A | MWH06.D6.C3.C2100, MWH06.D6.S1000 | 100% | 2021-02-05 | 2021-02-05 | VECA Electric [20 h] | 2 | 3 | 2 | 6 | 3 | 4 |  |
| MWH06.D6.C3.C2120 |  | Install added DRB#3 Tray and conduit | 3d | 2021-04-28 A | 2021-05-03 A | MWH06.D6.C3.C2110, MWH06-9940, MWH06-10531, MWH06-10530 | 100% | 2021-04-30 | 2021-05-04 | VECA Electric [60 h] | 2 | 3 | 2 | 6 | 3 | 4 |  |
|  | 1 | **Exterior Systmes Build-out** |  | 2021-04-28 | 2021-07-28 |  |  |  |  |  |  |  |  |  |  |  |  |
| MWH06-10243 |  | Install MER Supply duct | 5d | 2021-04-28 A | 2021-05-04 A | MWH06-9940 | 100% | 2021-05-17 | 2021-05-21 | VECA Electric [20 h] | 2 | 3 | 2 | 6 | 3 | 4 | 3 |
| MWH06.D6.C3.C2130 |  | Install Roxtec blocks and Install tray/conduit from Roxtec to MER (DRB#3) | 4d | 2021-05-05 A | 2021-05-08 A | MWH06.D6.C3.C2120, MWH06.C3.C2260, MWH06-9940, MWH06-10243, MWH06-10531, MWH06-10530 | 100% | 2021-06-03 | 2021-06-07 | VECA Electric [80 h] | 1 | 3 | 2 | 6 | 3 | 4 |  |
| MWH06.D6.C3.C2140 |  | Install additional Cable bus (DRB#3) | 1d | 2021-05-13 A | 2021-05-13 A | MWH06.C3.C2330, MWH06.D6.S1030, MWH06-9940 | 100% | 2021-05-29 | 2021-05-29 |  | 2 | 3 | 2 | 6 | 3 | 4 | 3 |
| MWH06.D6.C3.C2170 |  | Install additional Cable bus feeder (DRB#3) | 1d | 2021-06-10 A | 2021-06-11 A | MWH06.C3.C2380, MWH06-9940, MWH06-10531, MWH06-10530 | 100% | 2021-06-30 | 2021-06-30 | VECA Electric [20 h] | 2 | 3 | 2 | 6 | 3 | 4 | 3 |
| MWH06.D6.C3.C2160 |  | Install additional Electrical Feeders for Mech equipment additional Term (DRB#3) | 1d | 2021-06-23 A | 2021-06-23 A | MWH06.C3.C2350, MWH06-9940, MWH06-10531, MWH06-10530 | 100% | 2021-06-30 | 2021-06-30 | VECA Electric [20 h] | 2 | 3 | 2 | 6 | 3 | 4 |  |
| MWH06.D6.C3.C2180 |  | Install Roxtec block sealing and install added tray cable (DRB#3) | 6d | 2021-07-21 A | 2021-07-28 A | MWH06-10463 FF+8d, MWH06.D6.C3.C2130, MWH06.C3.C2420, MWH06.C3.C2350, MWH06-9940, MWH06-10531, MWH06-10530 | 100% | 2021-08-09 | 2021-08-16 | VECA Electric [120 h] | 1 | 3 | 2 | 6 | 3 | 4 |  |

| ID | WBS | Activity | Duration | Start | Finish | Predecessors | Complete | Planned start | Planned finish | Total float | Free float | Resources | HRA - Safety Level | COLO | CELL | DELAY | HRA - Required Permit- Priority-1 | HRA - Required Permit- Priority-2 | Critical Path mer to COLO |
| --- | --- | --- | --- | --- | --- | --- | --- | --- | --- | --- | --- | --- | --- | --- | --- | --- | --- | --- | --- |
|  | 5 | **COLO-3 CEll-4** |  | 2021-01-11 | 2021-08-21 |  |  |  |  |  |  |  |  |  |  |  |  |  |  |
|  | 2 | **Insterior Systems Build-out** |  | 2021-01-11 | 2021-05-27 |  |  |  |  |  |  |  |  |  |  |  |  |  |  |
| MWH06.D6.C3.C4100 |  | Sure steel - PEMB MER penetration framing | 4d | 2021-01-11 A | 2021-01-15 A | MWH06.D6.S1040, MWH06.D6.C3.C2100 | 100% | 2021-02-05 | 2021-02-10 |  |  | Steel [40 h] | 2 | 3 | 4 | 6 | 3 | 4 |  |
| MWH06.D6.C3.C4110 |  | Wall Penetration installation rough-in (Install Roxtec frame) (DRB#3) | 1d | 2021-02-15 A | 2021-02-17 A | MWH06.D6.C3.C4100, MWH06.D6.S1000 | 100% | 2021-03-01 | 2021-03-01 |  |  | VECA Electric [20 h] | 2 | 3 | 4 | 6 | 3 | 4 |  |
| MWH06.D6.C3.C4120 |  | Install added DRB#3 Tray and conduit | 3d | 2021-05-24 A | 2021-05-27 A | MWH06.D6.C3.C4110, MWH06-9942, MWH06-10531, MWH06-10530 | 100% | 2021-06-01 | 2021-06-03 |  |  | VECA Electric [60 h] | 2 | 3 | 4 | 6 | 3 | 4 |  |
|  | 1 | **Exterior Systmes Build-out** |  | 2021-05-21 | 2021-08-21 |  |  |  |  |  |  |  |  |  |  |  |  |  |  |
| MWH06-10244 |  | Install MER Supply duct | 5d | 2021-05-21 A | 2021-05-27 A | MWH06-9942, MWH06-10531, MWH06-10530 | 100% | 2021-06-01 | 2021-06-05 |  |  | VECA Electric [20 h] | 2 | 3 | 4 | 6 | 3 | 4 | 3 |
| MWH06.D6.C3.C4130 |  | Install Roxtec blocks and Install tray/conduit from Roxtec to MER (DRB#3) | 4d | 2021-05-28 A | 2021-06-02 A | MWH06.D6.C3.C4120, MWH06.C3.C4270, MWH06-9942, MWH06-10244, MWH06-10531, MWH06-10530 | 100% | 2021-06-07 | 2021-06-10 |  |  | VECA Electric [80 h] | 1 | 3 | 4 | 6 | 3 | 4 |  |
| MWH06.D6.C3.C4140 |  | Install additional Cable bus (DRB#3) | 1d | 2021-05-31 A | 2021-05-31 A | MWH06.C3.C4320, MWH06.D6.S1030, MWH06-9942, MWH06-10530 | 100% | 2021-06-05 | 2021-06-05 |  |  |  | 2 | 3 | 4 | 6 | 3 | 4 | 3 |
| MWH06.D6.C3.C4170 |  | Install additional Electrical Feeders for Mech equipment additional Term (DRB#3) | 1d | 2021-06-30 A | 2021-06-30 A | MWH06.C3.C4380, MWH06-9942, MWH06-10531, MWH06-10530 | 100% | 2021-07-06 | 2021-07-06 |  |  | VECA Electric [20 h] | 2 | 3 | 4 | 6 | 3 | 4 |  |
| MWH06.D6.C3.C4160 |  | Install additional Cable bus feeder (DRB#3) | 1d | 2021-07-16 A | 2021-07-16 A | MWH06.C3.C4370, MWH06-9942, MWH06-10531, MWH06-10530 | 100% | 2021-07-31 | 2021-07-31 |  |  | VECA Electric | 2 | 3 | 4 | 6 | 3 | 4 | 3 |
| MWH06.D6.C3.C4180 |  | Install Roxtec block sealing and install added tray cable (DRB#3) | 6d | 2021-08-16 A | 2021-08-21 A | MWH06-10465 FS+8d, MWH06.D6.C3.C4130, MWH06.C3.C4420, MWH06.C3.C4380, MWH06-9942, MWH06-10531, MWH06-10530 | 100% | 2021-08-31 | 2021-09-08 |  |  | VECA Electric [120 h] | 1 | 3 | 4 | 6 | 3 | 4 |  |
|  | 9 | **COLO-3 ADP01 & ADP02 Equipment Shift** |  | 2021-06-01 | 2021-08-16 |  |  |  |  |  |  |  |  |  |  |  |  |  |  |
| MWH06-10397 |  | COLO-3 Cell-1 Late start to Pulling PDU Feeders due to Space constraint in MER (ADP in front of MSB) | 14d | 2021-06-01 A | 2021-06-18 A | MWH06.C3.C1360 FF, MWH06-10530 | 100% | 2021-06-30 | 2021-07-17 |  |  |  |  | 3 | 1 |  |  |  |  |
| MWH06-10400 |  | COLO-3 Cell-2 Late start to Pulling PDU Feeders due to Space constraint in MER (ADP in front of MSB) | 18d | 2021-06-07 A | 2021-06-22 A | MWH06.C3.C2350 FF, MWH06-10530 | 100% | 2021-06-30 | 2021-07-22 |  |  |  |  | 3 | 2 |  |  |  |  |
| MWH06-10398 |  | COLO-3 Cell-3 Late start to Pulling PDU Feeders due to Space constraint in MER (ADP in front of MSB) | 14d | 2021-06-14 A | 2021-08-16 A | MWH06.C3.C3350 FF, MWH06-10530 | 100% | 2021-06-30 | 2021-07-17 |  |  |  |  | 3 | 3 |  |  |  |  |
| MWH06-10399 |  | COLO-3 Cell-4 Late start to Pulling PDU Feeders due to Space constraint in MER (ADP in front of MSB) | 14d | 2021-06-14 A | 2021-06-29 A | MWH06.C3.C4380 FF, MWH06-10530 | 100% | 2021-06-30 | 2021-07-17 |  |  |  |  | 3 | 4 |  |  |  |  |
|  | 4 | **COLO-4** |  | 2021-01-18 | 2021-10-08 |  |  |  |  |  |  |  |  |  |  |  |  |  |  |
|  | 2 | **COLO-4 CEll-1** |  | 2021-01-18 | 2021-09-29 |  |  |  |  |  |  |  |  |  |  |  |  |  |  |
|  | 2 | **Insterior Systems Build-out** |  | 2021-01-18 | 2021-07-13 |  |  |  |  |  |  |  |  |  |  |  |  |  |  |
| MWH06.D6.C4.C1100 |  | Sure steel - PEMB MER penetration framing | 4d | 2021-01-18 A | 2021-01-22 A | MWH06.D6.S1040, MWH06.D6.C3.C3100 | 100% | 2021-02-11 | 2021-02-15 |  |  | Steel [40 h] | 2 | 4 | 1 | 6 | 3 | 4 |  |
| MWH06.D6.C4.C1110 |  | Wall Penetration installation rough-in (Install Roxtec frame) (DRB#3) | 1d | 2021-04-30 A | 2021-04-30 A | MWH06.D6.C4.C1100, MWH06.D6.S1000, MWH06-10531, MWH06-10530 | 100% | 2021-06-01 | 2021-06-01 |  |  | VECA Electric | 2 | 4 | 1 | 6 | 3 | 4 |  |
| MWH06.D6.C4.C1120 |  | Install added DRB#3 Tray and conduit | 3d | 2021-06-17 A | 2021-07-13 A | MWH06-10580, MWH06-10574, MWH06.D6.C4.C1110, MWH06-9943, MWH06-10531, MWH06-10530 | 100% | 2021-07-06 | 2021-07-08 |  |  | VECA Electric [60 h] | 2 | 4 | 1 | 6 | 3 | 4 |  |
|  | 1 | **Exterior Systmes Build-out** |  | 2021-06-05 | 2021-09-29 |  |  |  |  |  |  |  |  |  |  |  |  |  |  |
| MWH06-10245 |  | Install MER Supply duct | 5d | 2021-06-05 A | 2021-06-10 A | MWH06-9943, MWH06-10531, MWH06-10530 | 100% | 2021-06-30 | 2021-07-07 |  |  | VECA Electric [20 h] | 2 | 4 | 1 | 6 | 3 | 4 | 4 |
| MWH06.D6.C4.C1130 |  | Install Roxtec blocks and Install tray/conduit from Roxtec to MER (DRB#3) | 4d | 2021-06-11 A | 2021-06-16 A | MWH06.D6.C4.C1120, MWH06.C4.C1230, MWH06-9943, MWH06-10245, MWH06-10531, MWH06-10530 | 100% | 2021-07-08 | 2021-07-12 |  |  | VECA Electric | 1 | 4 | 1 | 6 | 3 | 4 |  |
| MWH06.D6.C4.C1140 |  | Install additional Cable bus (DRB#3) | 1d | 2021-06-25 A | 2021-06-26 A | MWH06.C4.C1320, MWH06.D6.S1030, MWH06-9943, MWH06-10530 | 100% | 2021-07-31 | 2021-07-31 |  |  |  | 2 | 4 | 1 | 6 | 3 | 4 | 4 |
| MWH06.D6.C4.C1160 |  | Install additional Cable bus feeder (DRB#3) | 1d | 2021-07-30 A | 2021-07-30 A | MWH06.C4.C1380, MWH06-9943, MWH06-10531, MWH06-10530, MWH06-10572 | 100% | 2021-07-31 | 2021-07-31 |  |  | VECA Electric [20 h] | 2 | 4 | 1 | 6 | 3 | 4 | 4 |
| MWH06.D6.C4.C1150 |  | Install additional Electrical Feeders for Mech equipment additional Term (DRB#3) | 1d | 2021-08-25 A | 2021-08-25 A | MWH06.C4.C1340, MWH06-9943, MWH06-10531, MWH06-10530 | 100% | 2021-08-31 | 2021-08-31 |  |  | VECA Electric [20 h] | 2 | 4 | 1 | 6 | 3 | 4 |  |
| MWH06.D6.C4.C1180 |  | Install Roxtec block sealing and install added tray cable (DRB#3) | 6d | 2021-09-22 | 2021-09-29 | MWH06-10453 FF+8d, MWH06.D6.C4.C1130, MWH06.C4.C1420, MWH06.C4.C1340, MWH06-9943, MWH06-10531, MWH06-10530 |  |  |  | -32d | 0d | VECA Electric [120 h] | 1 | 4 | 1 | 6 | 3 | 4 |  |

| ID | WBS | Activity | Duration | Start | Finish | Predecessors | Complete | Planned start | Planned finish | Total float | Free float | Resources | HRA - Safety Level | COLO | CELL | DELAY | HRA - Required Permit- Priority-1 | HRA - Required Permit- Priority-2 | Critical Path mer to COLO |
| --- | --- | --- | --- | --- | --- | --- | --- | --- | --- | --- | --- | --- | --- | --- | --- | --- | --- | --- | --- |
|  | 4 | **COLO-4 CEll-3** |  | 2021-01-18 | 2021-10-08 |  |  |  |  |  |  |  |  |  |  |  |  |  |  |
|  | 2 | **Insterior Systems Build-out** |  | 2021-01-18 | 2021-07-13 |  |  |  |  |  |  |  |  |  |  |  |  |  |  |
| MWH06.D6.C4.C3100 |  | Sure steel - PEMB MER penetration framing | 4d | 2021-01-18 A | 2021-01-22 A | MWH06.D6.S1040, MWH06.D6.C4.C1100 | 100% | 2021-02-16 | 2021-02-19 |  |  | Steel [40 h] | 2 | 4 | 3 | 6 | 3 | 4 |  |
| MWH06.D6.C4.C3110 |  | Wall Penetration installation rough-in (Install Roxtec frame) (DRB#3) | 1d | 2021-04-30 A | 2021-04-30 A | MWH06.D6.C4.C3100, MWH06.D6.S1000, MWH06-10531, MWH06-10530 | 100% | 2021-06-01 | 2021-06-01 |  |  | VECA Electric [20 h] | 2 | 4 | 3 | 6 | 3 | 4 |  |
| MWH06.D6.C4.C3120 |  | Install added DRB#3 Tray and conduit | 3d | 2021-07-06 A | 2021-07-13 A | MWH06-10580, MWH06-10574, MWH06.D6.C4.C3110, MWH06-9945, MWH06-10531, MWH06-10530, MWH06-10572 | 100% | 2021-07-31 | 2021-08-03 |  |  | VECA Electric [60 h] | 2 | 4 | 3 | 6 | 3 | 4 |  |
|  | 1 | **Exterior Systmes Build-out** |  | 2021-07-06 | 2021-10-08 |  |  |  |  |  |  |  |  |  |  |  |  |  |  |
| MWH06-10246 |  | Install MER Supply duct | 5d | 2021-07-06 A | 2021-07-10 A | MWH06-9945, MWH06-10531, MWH06-10530 | 100% | 2021-07-31 | 2021-08-05 |  |  | VECA Electric [20 h] | 2 | 4 | 3 | 6 | 3 | 4 | 4 |
| MWH06.D6.C4.C3130 |  | Install Roxtec blocks and Install tray/conduit from Roxtec to MER (DRB#3) | 4d | 2021-07-12 A | 2021-07-15 A | MWH06.D6.C4.C3120, MWH06.C4.C3210, MWH06-9945, MWH06-10246, MWH06-10531, MWH06-10530 | 100% | 2021-07-31 | 2021-08-04 |  |  | VECA Electric [80 h] | 1 | 4 | 3 | 6 | 3 | 4 |  |
| MWH06.D6.C4.C3140 |  | Install additional Cable bus (DRB#3) | 1d | 2021-07-17 A | 2021-07-17 A | MWH06.C4.C3320, MWH06.D6.S1030, MWH06-9945, MWH06-10530 | 100% | 2021-07-31 | 2021-07-31 |  |  |  | 2 | 4 | 3 | 6 | 3 | 4 | 4 |
| MWH06.D6.C4.C3160 |  | Install additional Cable bus feeder (DRB#3) | 1d | 2021-08-04 A | 2021-08-04 A | MWH06.C4.C3380, MWH06-9945, MWH06-10531, MWH06-10530 | 100% | 2021-08-31 | 2021-08-31 |  |  | VECA Electric [20 h] | 2 | 4 | 3 | 6 | 3 | 4 | 4 |
| MWH06.D6.C4.C3150 |  | Install additional Electrical Feeders for Mech equipment additional Term (DRB#3) | 1d | 2021-09-03 | 2021-09-03 | MWH06.C4.C3390, MWH06-9945, MWH06-10531, MWH06-10530 |  |  |  | 8d | 40d | VECA Electric [20 h] | 2 | 4 | 3 | 6 | 3 | 4 |  |
| MWH06.D6.C4.C3180 |  | Install Roxtec block sealing and install added tray cable (DRB#3) | 6d | 2021-10-02 | 2021-10-08 | MWH06-10455 FF+8d, MWH06.D6.C4.C3130, MWH06.C4.C3420, MWH06.C4.C3390, MWH06-9945, MWH06-10531, MWH06-10530 |  |  |  | -30d | 0d | VECA Electric [120 h] | 1 | 4 | 3 | 6 | 3 | 4 |  |
|  | 3 | **COLO-4 CEll-2** |  | 2021-01-18 | 2021-09-29 |  |  |  |  |  |  |  |  |  |  |  |  |  |  |
|  | 2 | **Insterior Systems Build-out** |  | 2021-01-18 | 2021-07-02 |  |  |  |  |  |  |  |  |  |  |  |  |  |  |
| MWH06.D6.C4.C2100 |  | Sure steel - PEMB MER penetration framing | 4d | 2021-01-18 A | 2021-01-22 A | MWH06.D6.S1040, MWH06.D6.C3.C4100 | 100% | 2021-02-11 | 2021-02-15 |  |  | Steel [40 h] | 2 | 4 | 2 | 6 | 3 | 4 |  |
| MWH06.D6.C4.C2110 |  | Wall Penetration installation rough-in (Install Roxtec frame) (DRB#3) | 1d | 2021-04-30 A | 2021-04-30 A | MWH06.D6.C4.C2100, MWH06.D6.S1000, MWH06-10531, MWH06-10530 | 100% | 2021-06-01 | 2021-06-01 |  |  | VECA Electric [20 h] | 2 | 4 | 2 | 6 | 3 | 4 |  |
| MWH06.D6.C4.C2120 |  | Install added DRB#3 Tray and conduit | 3d | 2021-06-30 A | 2021-07-02 A | MWH06.D6.C4.C2110, MWH06-9944, MWH06-10531, MWH06-10530 | 100% | 2021-07-31 | 2021-08-03 |  |  | VECA Electric [60 h] | 2 | 4 | 2 | 6 | 3 | 4 |  |
|  | 1 | **Exterior Systmes Build-out** |  | 2021-06-30 | 2021-09-29 |  |  |  |  |  |  |  |  |  |  |  |  |  |  |
| MWH06-10247 |  | Install MER Supply duct | 5d | 2021-06-30 A | 2021-07-07 A | MWH06-9944, MWH06-10531, MWH06-10530 | 100% | 2021-07-31 | 2021-08-05 |  |  | VECA Electric [20 h] | 2 | 4 | 2 | 6 | 3 | 4 | 4 |
| MWH06.D6.C4.C2130 |  | Install Roxtec blocks and Install tray/conduit from Roxtec to MER (DRB#3) | 4d | 2021-07-08 A | 2021-07-12 A | MWH06.D6.C4.C2120, MWH06.C4.C2270, MWH06-9944, MWH06-10247, MWH06-10531, MWH06-10530 | 100% | 2021-08-06 | 2021-08-10 |  |  | VECA Electric [80 h] | 1 | 4 | 2 | 6 | 3 | 4 |  |
| MWH06.D6.C4.C2140 |  | Install additional Cable bus (DRB#3) | 1d | 2021-07-28 A | 2021-07-28 A | MWH06.C4.C2330, MWH06.D6.S1030, MWH06-9944, MWH06-10530 | 100% | 2021-06-30 | 2021-06-30 |  |  |  | 2 | 4 | 2 | 6 | 3 | 4 | 4 |
| MWH06.D6.C4.C2160 |  | Install additional Cable bus feeder (DRB#3) | 1d | 2021-08-13 A | 2021-08-16 A | MWH06.C4.C2380, MWH06-9944, MWH06-10531, MWH06-10530 | 100% | 2021-08-31 | 2021-08-31 |  |  | VECA Electric [20 h] | 2 | 4 | 2 | 6 | 3 | 4 | 4 |
| MWH06.D6.C4.C2150 |  | Install additional Electrical Feeders for Mech equipment additional Term (DRB#3) | 1d | 2021-08-25 A | 2021-08-25 A | MWH06.C4.C2360, MWH06-9944, MWH06-10531, MWH06-10530 | 100% | 2021-08-31 | 2021-08-31 |  |  | VECA Electric [20 h] | 2 | 4 | 2 | 6 | 3 | 4 |  |
| MWH06.D6.C4.C2180 |  | Install Roxtec block sealing and install added tray cable (DRB#3) | 6d | 2021-09-22 | 2021-09-29 | MWH06-10454 FF+8d, MWH06.D6.C4.C2130, MWH06.C4.C2410, MWH06.C4.C2360, MWH06-9944, MWH06-10531, MWH06-10530 |  |  |  | -32d | 0d | VECA Electric [120 h] | 1 | 4 | 2 | 6 | 3 | 4 |  |

| ID | WBS | Activity | Duration | Start | Finish | Predecessors | Complete | Remaining | Planned start | Planned finish | Total float | Free float | Constraint | Expected finish | Resources | HRA - Safety Level | COLO | CELL | DELAY | HRA - Required Permit- Priority-1 | HRA - Required Permit- Priority-2 | Critical Path mer to COLO |
| --- | --- | --- | --- | --- | --- | --- | --- | --- | --- | --- | --- | --- | --- | --- | --- | --- | --- | --- | --- | --- | --- | --- |
|  | 5 | **COLO-4 CEll-4** |  | 2021-01-18 | 2021-09-29 |  |  |  |  |  |  |  |  |  |  |  |  |  |  |  |  |  |
|  | 2 | **Insterior Systems Build-out** |  | 2021-01-18 | 2021-07-08 |  |  |  |  |  |  |  |  |  |  |  |  |  |  |  |  |  |
| MWH06.D6.C4.C4100 |  | Sure steel - PEMB MER penetration framing | 4d | 2021-01-18 A | 2021-01-22 A | MWH06.D6.S1040, MWH06.D6.C4.C2100 | 100% |  | 2021-02-16 | 2021-02-19 |  |  |  |  | Steel [40 h] | 2 | 4 | 4 | 6 | 3 | 4 |  |
| MWH06.D6.C4.C4110 |  | Wall Penetration installation rough-in (Install Roxtec frame) (DRB#3) | 1d | 2021-04-30 A | 2021-04-30 A | MWH06.D6.C4.C4100, MWH06.D6.S1000, MWH06-10531, MWH06-10530 | 100% |  | 2021-06-01 | 2021-06-01 |  |  |  |  | VECA Electric [20 h] | 2 | 4 | 4 | 6 | 3 | 4 |  |
| MWH06.D6.C4.C4120 |  | Install added DRB#3 Tray and conduit | 3d | 2021-07-06 A | 2021-07-08 A | MWH06.D6.C4.C4110, MWH06-9946, MWH06-10531, MWH06-10530 | 100% |  | 2021-07-31 | 2021-08-03 |  |  |  |  | VECA Electric [60 h] | 2 | 4 | 4 | 6 | 3 | 4 |  |
|  | 1 | **Exterior Systmes Build-out** |  | 2021-07-06 | 2021-09-29 |  |  |  |  |  |  |  |  |  |  |  |  |  |  |  |  |  |
| MWH06-10248 |  | Install MER Supply duct | 5d | 2021-07-06 A | 2021-07-10 A | MWH06-9946, MWH06-10531, MWH06-10530 | 100% |  | 2021-07-31 | 2021-08-05 |  |  |  |  | VECA Electric [20 h] | 2 | 4 | 4 | 6 | 3 | 4 | 4 |
| MWH06.D6.C4.C4130 |  | Install Roxtec blocks and Install tray/conduit from Roxtec to MER (DRB#3) | 4d | 2021-07-12 A | 2021-07-15 A | MWH06.D6.C4.C4120, MWH06.C4.C4250, MWH06-9946, MWH06-10248, MWH06-10531, MWH06-10530 | 100% |  | 2021-08-06 | 2021-08-10 |  |  |  |  | VECA Electric [80 h] | 1 | 4 | 4 | 6 | 3 | 4 |  |
| MWH06.D6.C4.C4140 |  | Install additional Cable bus (DRB#3) | 1d | 2021-07-28 A | 2021-07-28 A | MWH06.C4.C4310, MWH06.D6.S1030, MWH06-9946, MWH06-10530 | 100% |  | 2021-07-31 | 2021-07-31 |  |  |  |  |  | 2 | 4 | 4 | 6 | 3 | 4 | 4 |
| MWH06.D6.C4.C4150 |  | Install additional Cable bus feeder (DRB#3) | 1d | 2021-08-24 A | 2021-08-25 A | MWH06.C4.C4370, MWH06-9946, MWH06-10531, MWH06-10530, MWH06-10572 | 100% |  | 2021-08-31 | 2021-08-31 |  |  |  |  | VECA Electric [20 h] | 2 | 4 | 4 | 6 | 3 | 4 | 4 |
| MWH06.D6.C4.C4160 |  | Install additional Electrical Feeders for Mech equipment additional Term (DRB#3) | 1d | 2021-08-25 A | 2021-08-25 A | MWH06.C4.C4390, MWH06-9946, MWH06-10531, MWH06-10530 | 100% |  | 2021-08-31 | 2021-08-31 |  |  |  |  | VECA Electric [20 h] | 2 | 4 | 4 | 6 | 3 | 4 |  |
| MWH06.D6.C4.C4180 |  | Install Roxtec block sealing and install added tray cable (DRB#3) | 6d | 2021-09-22 | 2021-09-29 | MWH06-10456 FF+8d, MWH06.D6.C4.C4130, MWH06.C4.C4420, MWH06.C4.C4390, MWH06-9946, MWH06-10531, MWH06-10530 |  |  |  |  | -22d | 0d |  |  | VECA Electric [120 h] | 1 | 4 | 4 | 6 | 3 | 4 |  |
|  | 10 | **COLO-4 ADP01 & ADP02 Equipment Shift** |  | 2021-08-07 | 2021-09-02 |  |  |  |  |  |  |  |  |  |  |  |  |  |  |  |  |  |
| MWH06-10401 |  | COLO-4 Cell-1 Late start to Pulling PDU Feeders due to Space constraint in MER (ADP in front of MSB) | 14d | 2021-08-07 A | 2021-08-24 A | MWH06.C4.C1340 FF, MWH06-10530 | 100% |  | 2021-09-09 | 2021-09-24 |  |  |  |  |  |  | 4 | 1 |  |  |  |  |
| MWH06-10403 |  | COLO-4 Cell-4 Late start to Pulling PDU Feeders due to Space constraint in MER (ADP in front of MSB) | 14d | 2021-08-07 A | 2021-08-24 A | MWH06.C4.C4390 FF, MWH06-10530 | 100% |  | 2021-08-31 | 2021-09-17 |  |  |  |  |  |  | 4 | 4 |  |  |  |  |
| MWH06-10404 |  | COLO-4 Cell-2 Late start to Pulling PDU Feeders due to Space constraint in MER (ADP in front of MSB) | 14d | 2021-08-07 A | 2021-08-24 A | MWH06.C4.C2360 FF, MWH06-10530 | 100% |  | 2021-08-31 | 2021-09-17 |  |  |  |  |  |  | 4 | 2 |  |  |  |  |
| MWH06-10402 |  | COLO-4 Cell-3 Late start to Pulling PDU Feeders due to Space constraint in MER (ADP in front of MSB) | 14d | 2021-08-18 A | 2021-09-02 | MWH06.C4.C3390 FF, MWH06-10530 | 79% | 3d | 2021-08-31 | 2021-09-17 | -30d | 0d |  | 2021-09-02 |  |  | 4 | 3 |  |  |  |  |
|  | 7 | **Delay #7- Force Majeure Shutdown -Hazardous Air Quality Index** |  | 2020-09-09 | 2020-09-16 |  |  |  |  |  |  |  |  |  |  |  |  |  |  |  |  |  |
| MWH06-9716 |  | Site Shut Down - 9/9/2020 | 1d | 2020-09-09 A | 2020-09-09 A | MWH.06.M1000 | 100% |  | 2020-09-14 | 2020-09-14 |  |  | start on or after 2020-09-09 |  |  |  | 0 | All | 7 |  |  |  |
| MWH06-9717 |  | Site Shut Down - 9/10/2020 | 1d | 2020-09-10 A | 2020-09-10 A | MWH06-9716 | 100% |  | 2020-09-15 | 2020-09-15 |  |  |  |  |  |  | 0 | All | 7 |  |  |  |
| MWH06-9718 |  | Site Shut Down - 9/11/2020 | 1d | 2020-09-11 A | 2020-09-11 A | MWH06-9717 | 100% |  | 2020-09-16 | 2020-09-16 |  |  |  |  |  |  | 0 | All | 7 |  |  |  |
| MWH06-9719 |  | Site Shut Down - 9/12/2020 | 1d | 2020-09-12 A | 2020-09-12 A | MWH06-9718 | 100% |  | 2020-09-17 | 2020-09-17 |  |  |  |  |  |  | 0 | All | 7 |  |  |  |
| MWH06-9720 |  | Site Shut Down - 9/14/2020 | 1d | 2020-09-14 A | 2020-09-14 A | MWH06-9719 | 100% |  | 2020-09-28 | 2020-09-28 |  |  |  |  |  |  | 0 | All | 7 |  |  |  |
| MWH06-9721 |  | Site Shut Down - 9/15/2020 | 1d | 2020-09-15 A | 2020-09-15 A | MWH06-9720 | 100% |  | 2020-09-29 | 2020-09-29 |  |  |  |  |  |  | 0 | All | 7 |  |  |  |
| MWH06-9722 |  | Site Shut Down - 9/16/2020 | 1d | 2020-09-16 A | 2020-09-16 A | MWH06-9721 | 100% |  | 2020-09-30 | 2020-09-30 |  |  |  |  |  |  | 0 | All | 7 |  |  |  |

| ID | WBS | Activity | Duration | Start | Finish | Predecessors | Complete | Planned start | Planned finish | Constraint | Calendar | COLO | CELL | DELAY | MSP Activity ID | Critical Path | MSFT-Funding Releases | WBS | COLO CRITICAL |
| --- | --- | --- | --- | --- | --- | --- | --- | --- | --- | --- | --- | --- | --- | --- | --- | --- | --- | --- | --- |
|  | 8 | **Delay #8-Underground Utilities impacted by Overhead Power lines** |  | 2020-09-12 | 2021-01-30 |  |  |  |  |  |  |  |  |  |  |  |  |  |  |
|  | 1 | **IWW Tie-in** |  | 2020-09-12 | 2020-10-28 |  |  |  |  |  |  |  |  |  |  |  |  |  |  |
| MWH06-9725 |  | Clayco Waiting on Overhead Powerlines to be grounded | 30d | 2020-09-12 A | 2020-09-17 A | MWH06.S.1041 | 100% | 2020-09-14 | 2020-10-19 |  |  | S | All | 8 |  |  |  |  |  |
| MWH06-9724 |  | Complete Remaining IWW piping to tie-in point | 26d | 2020-09-21 A | 2020-10-28 A | MWH06-9725, MWH06.S.1041, MWH06-9716, MWH06-9717, MWH06-9718, MWH06-9719, MWH06-9720, MWH06-9721, MWH06-9722 | 100% | 2020-09-28 | 2020-10-29 |  |  | S | All | 8 | 688 | 4 | 1B | A |  |
|  | 2 | **Sanitary Tie-in** |  | 2020-09-12 | 2020-10-28 |  |  |  |  |  |  |  |  |  |  |  |  |  |  |
| MWH06-9727 |  | Clayco Waiting on Overhead Powerlines to be grounded | 30d | 2020-09-12 A | 2020-09-17 A | MWH06.S.1031 | 100% | 2020-09-14 | 2020-10-19 |  |  | S | All | 8 |  |  |  |  |  |
| MWH06-9726 |  | Complete Remaining Sanitary piping to tie-in point | 25d | 2020-09-21 A | 2020-10-28 A | MWH06-9727, MWH06-9716, MWH06-9717, MWH06-9718, MWH06-9719, MWH06-9720, MWH06-9721, MWH06-9722 | 100% | 2020-09-21 | 2020-10-20 |  |  | S | All | 8 | 688 | 4 | 1B | A |  |
|  | 3 | **Fire Main Tie-in** |  | 2020-09-12 | 2021-01-30 |  |  |  |  |  |  |  |  |  |  |  |  |  |  |
| MWH06-9730 |  | Clayco Waiting on Overhead Powerlines to be grounded | 30d | 2020-09-12 A | 2020-09-17 A | MWH06.S.1130 | 100% | 2020-09-14 | 2020-10-19 |  |  | S | All | 8 |  |  |  |  |  |
| MWH06-9731 |  | Complete Remaining Fire Main piping to tie-in point | 25d | 2020-09-21 A | 2021-01-30 A | MWH06.S.1120, MWH06-9730, MWH06-9716, MWH06-9717, MWH06-9718, MWH06-9719, MWH06-9720, MWH06-9721, MWH06-9722, MWH06-9915 | 100% | 2020-09-21 | 2020-10-20 |  |  | S | All | 8 | 688 | 4 | 1B | A |  |
|  | 4 | **ITW Tie-in** |  | 2020-09-12 | 2021-01-30 |  |  |  |  |  |  |  |  |  |  |  |  |  |  |
| MWH06-9729 |  | Clayco Waiting on Overhead Powerlines to be grounded | 30d | 2020-09-12 A | 2020-09-17 A | MWH06.S.1041 | 100% | 2020-09-14 | 2020-10-19 |  |  | S | All | 8 |  |  |  |  |  |
| MWH06-9728 |  | Complete Remaining ITW piping to tie-in point | 25d | 2020-09-21 A | 2021-01-30 A | MWH06.S.1120, MWH06-9729, MWH06-9716, MWH06-9717, MWH06-9718, MWH06-9719, MWH06-9720, MWH06-9721, MWH06-9722, MWH06-9915 | 100% | 2020-09-21 | 2020-10-20 |  |  | S | All | 8 | 688 | 4 | 1B | A |  |
|  | 5 | **Telecom Tie-in** |  | 2020-09-12 | 2020-10-17 |  |  |  |  |  |  |  |  |  |  |  |  |  |  |
| MWH06-9733 |  | Clayco Waiting on Overhead Powerlines to be grounded | 30d | 2020-09-12 A | 2020-09-17 A | MWH06.S.1160 | 100% | 2020-09-14 | 2020-10-19 |  |  | S | All | 8 |  |  |  |  |  |
| MWH06-9732 |  | Complete Remaining Telecom Duct Back (excluding Tie-in) | 25d | 2020-09-21 A | 2020-10-17 A | MWH06.S.1160, MWH06-9733, MWH06-9716, MWH06-9717, MWH06-9718, MWH06-9719, MWH06-9720, MWH06-9721, MWH06-9722 | 100% | 2020-09-21 | 2020-10-20 |  |  | S | All | 8 | 688 | 4 | 1B | A |  |
|  | 9 | **Delay #9 MER Delivery Delay** |  | 2020-11-06 | 2021-05-09 |  |  |  |  |  |  |  |  |  |  |  |  |  |  |
|  | 1 | **COLO-1** |  | 2020-11-06 | 2021-01-07 |  |  |  |  |  |  |  |  |  |  |  |  |  |  |
| MWH06-9734 |  | Delay in COLO-1- Cell-1 MER Delivery (Duration = COLO1 Cell-1 PSR(11/6/20) to MSFT delivery) | 40d | 2020-11-06 A | 2020-12-16 A | MWH06.C1.E1140 | 100% | 2020-12-21 | 2021-01-30 | start on or after 2020-11-06 | 7-8s w/Holidays Clayco | 1 | 1 | 9 |  |  |  |  |  |
| MWH06-9742 |  | Delay in COLO-1- Cell-2 MER Delivery (Duration = COLO1 Cell-2 PSR(11/13/20) to MSFT delivery) | 39d | 2020-11-13 A | 2020-12-22 A | MWH06.C1.E1150, MWH06.C1.E1220 | 100% | 2020-12-21 | 2021-01-29 | start on or after 2020-11-13 | 7-8s w/Holidays Clayco | 1 | 2 | 9 |  |  |  |  |  |
| MWH06-9743 |  | Delay in COLO-1- Cell-3 MER Delivery (Duration = COLO1 Cell-3 PSR(11/20/20) to MSFT delivery) | 45d | 2020-11-20 A | 2021-01-05 A | MWH06.C1.E1220 | 100% | 2020-12-21 | 2021-02-04 | start on or after 2020-11-20 | 7-8s w/Holidays Clayco | 1 | 3 | 9 |  |  |  |  |  |
| MWH06-9770 |  | Delay in COLO-1- Cell-4 MER Delivery (Duration = COLO1 Cell-4 PSR(11/30/20) to MSFT delivery) | 37d | 2020-11-30 A | 2021-01-07 A | MWH06.C1.E1230 | 100% | 2021-02-01 | 2021-03-09 | start on or after 2020-11-30 | 7-8s w/Holidays Clayco | 1 | 4 | 9 |  |  |  |  | 1 |
|  | 2 | **COLO-2** |  | 2020-12-15 | 2021-03-08 |  |  |  |  |  |  |  |  |  |  |  |  |  |  |
| MWH06-9746 |  | Delay in COLO-2- Cell-1 MER Delivery (Duration = Colo1 Cell-1 PSR(12/15/20) to MSFT delivery) | 39.2d | 2020-12-15 A | 2021-02-03 A | MWH06.C2.E1120 | 100% | 2020-12-21 | 2021-02-11 |  | MWH 06 - 60/60/50_p | 2 | 1 | 9 |  |  |  |  |  |
| MWH06-9747 |  | Delay in COLO-2- Cell-2 MER Delivery (Duration = COLO 2 Cell-2 PSR(12/22/20) to MSFT delivery) | 42d | 2020-12-22 A | 2021-02-17 A | MWH06.C2.E1130 | 100% | 2021-02-01 | 2021-03-25 |  | MWH 06 - 60/60/50_p | 2 | 2 | 9 |  |  |  |  |  |
| MWH06-9748 |  | Delay in COLO-2- Cell-3 MER Delivery (Duration = COLO 2- Cell-3 PSR(12/28/20) to MSFT delivery) | 44d | 2020-12-28 A | 2021-02-22 A | MWH06.C2.E1210 | 100% | 2021-02-01 | 2021-03-27 |  | MWH 06 - 60/60/50_p | 2 | 3 | 9 |  |  |  |  |  |
| MWH06-9771 |  | Delay in COLO-2- Cell-4 MER Delivery (Duration = COLO 2- Cell-4 PSR(1/5/21) to MSFT delivery) | 49d | 2021-01-05 A | 2021-03-08 A | MWH06.C2.E1200 | 100% | 2021-02-01 | 2021-04-02 |  | MWH 06 - 60/60/50_p | 2 | 4 | 9 |  |  |  |  | 2,3,4 |

| ID | WBS | Activity | Duration | Start | Finish | Predecessors | Complete | Planned start | Planned finish | Constraint | Calendar | COLO | CELL | DELAY |
| --- | --- | --- | --- | --- | --- | --- | --- | --- | --- | --- | --- | --- | --- | --- |
|  | 3 | **COLO-3** |  | 2021-01-29 | 2021-04-22 |  |  |  |  |  |  |  |  |  |
| MWH06-9749 |  | Delay in COLO-3- Cell-1 MER Delivery (Duration = COLO-3 Cell-1 PSR(1/29/21) to MSFT delivery) | 63d | 2021-01-29 A | 2021-04-02 A | MWH06.C3.E1120 | 100% | 2021-01-31 | 2021-04-03 | start on or after 2021-01-29 | 7-8s w/Holidays Clayco | 3 | 1 | 9 |
| MWH06-9750 |  | Delay in COLO-3- Cell-2 MER Delivery (Duration = COLO-3 Cell-2 PSR(2/5/21) to MSFT delivery) | 62d | 2021-02-05 A | 2021-04-08 A | MWH06.C3.E1130 | 100% | 2021-02-28 | 2021-04-30 | start on or after 2021-02-05 | 7-8s w/Holidays Clayco | 3 | 2 | 9 |
| MWH06-9751 |  | Delay in COLO-3 Cell-3 MER Delivery (Duration = COLO-3 Cell-3 PSR(2/12/21) to MSFT delivery) | 61d | 2021-02-12 A | 2021-04-14 A | MWH06.C3.E1260 | 100% | 2021-02-28 | 2021-04-29 | start on or after 2021-02-12 | 7-8s w/Holidays Clayco | 3 | 3 | 9 |
| MWH06-9772 |  | Delay in COLO-3 Cell-4 MER Delivery (Duration = COLO-3 Cell-4 PSR(2/19/21) to MSFT delivery) | 62d | 2021-02-19 A | 2021-04-22 A | MWH06.C3.E1270 | 100% | 2021-02-28 | 2021-04-30 | start on or after 2021-02-19 | 7-8s w/Holidays Clayco | 3 | 4 | 9 |
|  | 4 | **COLO-4** |  | 2021-03-12 | 2021-05-09 |  |  |  |  |  |  |  |  |  |
| MWH06-9752 |  | Delay in COLO-4- Cell-1 MER Delivery (Duration= COLO-4 Cell-1 PSR(3/12/21) to MSFT delivery) | 45d | 2021-03-12 A | 2021-04-26 A | MWH06.C4.E1120 | 100% | 2021-04-26 | 2021-06-09 | start on or after 2021-03-12 | 7-8s w/Holidays Clayco | 4 | 1 | 9 |
| MWH06-9753 |  | Delay in COLO-4- Cell-2 MER Delivery (Duration = COLO-4 Cell-2 PSR(3/19/21) to MSFT delivery) | 45d | 2021-03-19 A | 2021-05-03 A | MWH06.C4.E1130, MWH06.C4.E1230 | 100% | 2021-04-26 | 2021-06-09 | start on or after 2021-03-19 | 7-8s w/Holidays Clayco | 4 | 2 | 9 |
| MWH06-9754 |  | Delay in COLO-4- Cell-3 MER Delivery (Duration = COLO-4 Cell-3 PSR(3/26/21) to MSFT delivery) | 34d | 2021-03-26 A | 2021-04-29 A | MWH06.C4.E1220 | 100% | 2021-04-26 | 2021-05-29 | start on or after 2021-03-26 | 7-8s w/Holidays Clayco | 4 | 3 | 9 |
| MWH06-9773 |  | Delay in COLO-4- Cell-4 MER Delivery (Duration = COLO-4 Cell-4 PSR(4/2/21) to MSFT delivery) | 37d | 2021-04-02 A | 2021-05-09 A | MWH06.C4.E1230 | 100% | 2021-04-26 | 2021-06-01 | start on or after 2021-04-02 | 7-8s w/Holidays Clayco | 4 | 4 | 9 |
|  | 10 | **Delay#10 COVID Procurement Delay** |  | 2020-09-16 | 2020-11-24 |  |  |  |  |  |  |  |  |  |
| MWH06-9789 |  | Wire Mesh Submittal Approval | 4d | 2020-09-16 A | 2020-09-23 A | MWH.06.M1000 | 100% | 2020-11-16 | 2020-11-19 |  |  | 1 | All | 10 |
| MWH06-9788 |  | Wire Mesh Procurement | 37.5d | 2020-09-24 A | 2020-10-24 A | MWH06-9789 | 100% | 2020-11-16 | 2020-12-23 |  | 7-8s wo/Holidays Clayco | 1 | All | 10 |
| MWH06-9790 |  | Wire Mesh Procurement Delay | 4d | 2020-10-24 A | 2020-11-24 A | MWH06-9788 | 100% | 2020-11-16 | 2020-11-19 |  |  | 1 | All | 10 |
|  | 11 | **Delay#11 MWH02- Telecom vault Tie-In MSOW Delay** |  | 2020-10-16 | 2021-01-20 |  |  |  |  |  |  |  |  |  |
| MWH06-9890 |  | Clayco MSOW Submited for approval | 2d | 2020-10-16 A | 2020-10-19 A | MWH06.S.1160 | 100% | 2020-11-16 | 2020-11-17 |  |  | S | All | 11 |
| MWH06-9889 |  | Clayco waiting on MSOW Approval | 4d | 2020-10-19 A | 2020-12-01 A | MWH06-9732, MWH06.S.1160, MWH06-9890 | 100% | 2020-11-16 | 2020-11-19 |  |  | S | All | 11 |
| MWH06-9888 |  | Complete Remaining Telecom Duct Back tie-in Install to MWH02 | 15d | 2020-12-01 A | 2021-01-20 A | MWH06-9911, MWH06-9732, MWH06-9889, MWH06.S.1160, MWH06-9915 | 100% | 2020-12-21 | 2021-01-12 |  |  | S | All | 11 |
| MWH06-9911 |  | MSFT Stand down/ Additional Hydro excavation | 15d | 2020-12-08 A | 2020-12-19 A | MWH06-9889 | 100% | 2020-12-21 | 2021-01-12 |  |  | S | All | 11 |
|  | 12 | **Delay#12 Late UMS delivery Delay** |  | 2020-11-19 | 2020-12-11 |  |  |  |  |  |  |  |  |  |
| MWH06-9903 |  | Delay in UMS delivery (Duration = (9/19) to MSFT delivery) | 22d | 2020-11-19 A | 2020-12-11 A | MWH06-2503 | 100% | 2020-09-28 | 2020-10-19 | start on or after 2020-09-19 | 7-8s w/Holidays Clayco | S | All | 12 |
|  | 13 | **Delay#13 Gen Delivery Delay** |  | 2020-09-15 | 2021-04-15 |  |  |  |  |  |  |  |  |  |
|  | 1 | **COLO-1** |  | 2020-09-15 | 2020-11-13 |  |  |  |  |  |  |  |  |  |
| MWH06-9955 |  | Delay In COLO-1 Cell-1 Generator (Duration= COLO-1 Cell-1 PSR(9/15/20) to MSFT delivery) | 30d | 2020-09-15 A | 2020-10-15 A | MWH.06.M1000 | 100% | 2020-12-21 | 2021-01-19 |  | 7-8s wo/Holidays Clayco | 1 | 1 | 13 |
| MWH06-9956 |  | Delay In COLO-1 Cell-2 Generator (Duration= COLO-1 Cell-2 PSR(9/15/20) to MSFT delivery) | 48d | 2020-09-15 A | 2020-11-02 A | MWH.06.M1000 | 100% | 2020-12-21 | 2021-02-06 |  | 7-8s wo/Holidays Clayco | 1 | 2 | 13 |
| MWH06-9957 |  | Delay In COLO-1 Cell-4 Generator (Duration= COLO-1 Cell-4 PSR(9/29/20) to MSFT delivery) | 23d | 2020-09-29 A | 2020-10-22 A | MWH.06.M1000 | 100% | 2020-12-21 | 2021-01-12 |  | 7-8s wo/Holidays Clayco | 1 | 4 | 13 |
| MWH06-9958 |  | Delay In COLO-1 Cell-3 Generator (Duration= COLO-1 Cell-3 PSR(9/29/20) to MSFT delivery) | 45d | 2020-09-29 A | 2020-11-13 A | MWH.06.M1000, MWH06-9914 | 100% | 2020-12-21 | 2021-02-03 |  | 7-8s wo/Holidays Clayco | 1 | 3 | 13 |

| ID | WBS | Activity | Type | Duration | Start | Finish | Predecessors | Complete | Planned start | Planned finish | Constraint | Calendar | COLO | CELL | DELAY | MSP Activity ID | VECA % Complete | HRA - Safety Level | TRADE | MSFT-Funding Releases | WBS | HRA - Required Permit- Priority-1 | HRA - Required Permit- Priority-2 |
| --- | --- | --- | --- | --- | --- | --- | --- | --- | --- | --- | --- | --- | --- | --- | --- | --- | --- | --- | --- | --- | --- | --- | --- |
|  | 2 | **COLO-2** |  |  | 2020-10-12 | 2021-01-21 |  |  |  |  |  |  |  |  |  |  |  |  |  |  |  |  |  |
| MWH06-9905 |  | Delay In COLO-2 Cell-1 Generator (Duration= COLO-2 Cell-1 PSR(10/12/20) to MSFT delivery) |  | 77d | 2020-10-12 A | 2020-12-28 A | MWH.06.M1000 | 100% | 2020-12-21 | 2021-03-07 |  | 7-8s wo/Holidays Clayco | 2 | 1 | 13 |  |  |  |  |  |  |  |  |
| MWH06-9910 |  | Delay In COLO-2 Cell-3 Generator (Duration= COLO-2 Cell-3 PSR(10/22/20) to MSFT delivery) |  | 88d | 2020-10-22 A | 2021-01-18 A | MWH.06.M1000 | 100% | 2020-12-21 | 2021-03-18 |  | 7-8s wo/Holidays Clayco | 2 | 3 | 13 |  |  |  |  |  |  |  |  |
| MWH06-9908 |  | Delay In COLO-2 Cell-2 Generator (Duration= COLO-2 Cell-2 PSR(11/6/20) to MSFT delivery) |  | 63d | 2020-11-06 A | 2021-01-08 A | MWH.06.M1000 | 100% | 2020-12-21 | 2021-02-21 |  | 7-8s wo/Holidays Clayco | 2 | 2 | 13 |  |  |  |  |  |  |  |  |
| MWH06-9909 |  | Delay In COLO-2 Cell-4 Generator (Duration= COLO-2 Cell-4 PSR(11/21/20) to MSFT delivery) |  | 61d | 2020-11-21 A | 2021-01-21 A | MWH.06.M1000 | 100% | 2020-12-21 | 2021-02-19 |  | 7-8s wo/Holidays Clayco | 2 | 4 | 13 |  |  |  |  |  |  |  |  |
|  | 3 | **COLO-3** |  |  | 2020-11-05 | 2021-03-18 |  |  |  |  |  |  |  |  |  |  |  |  |  |  |  |  |  |
| MWH06-9950 |  | Delay In COLO-3 Cell-3 Generator (Duration= COLO-3 Cell-3 PSR(10/22/20) to MSFT delivery) |  | 120d | 2020-11-05 A | 2021-03-04 A | MWH.06.M1000 | 100% | 2020-12-31 | 2021-04-29 |  | 7-8s wo/Holidays Clayco | 3 | 3 | 13 |  |  |  |  |  |  |  |  |
| MWH06-9947 |  | Delay In COLO-3 Cell-1 Generator (Duration= COLO-3 Cell-1 PSR(10/12/20) to MSFT delivery) |  | 129d | 2020-11-09 A | 2021-03-18 A | MWH.06.M1000 | 100% | 2020-12-31 | 2021-05-08 |  | 7-8s wo/Holidays Clayco | 3 | 1 | 13 |  |  |  |  |  |  |  |  |
| MWH06-9948 |  | Delay In COLO-3 Cell-2 Generator (Duration= COLO-3 Cell-2 PSR(11/6/20) to MSFT delivery) |  | 90d | 2020-11-21 A | 2021-02-19 A | MWH.06.M1000 | 100% | 2020-12-31 | 2021-03-30 |  | 7-8s wo/Holidays Clayco | 3 | 2 | 13 |  |  |  |  |  |  |  |  |
| MWH06-9949 |  | Delay In COLO-3 Cell-4 Generator (Duration= COLO-3 Cell-4 PSR(11/21/20) to MSFT delivery) |  | 78d | 2020-12-09 A | 2021-02-25 A | MWH.06.M1000 | 100% | 2020-12-31 | 2021-03-18 |  | 7-8s wo/Holidays Clayco | 3 | 4 | 13 |  |  |  |  |  |  |  |  |
| MWH06-10367 |  | 6.1.39.1- COLO-3 CEll-1 GEN Belly tank Failed pressure test |  | 22d | 2021-02-11 A | 2021-03-17 A |  | 100% | 2021-03-15 | 2021-04-09 | start on or after 2021-03-08 |  |  |  |  |  |  |  |  |  |  |  |  |
| MWH06-10369 |  | 6.1.39.2- COLO-3 Cell-1 Replace Belly Tank and Set GEN |  | 5d | 2021-03-17 A | 2021-03-18 A | MWH06-10367 | 100% | 2021-03-22 | 2021-03-26 |  |  | 3 | 1 |  | 1409 | 0 | 4 | 4 | 2 | 3 | 5 | 4 |
|  | 4 | **COLO-4** |  |  | 2020-11-09 | 2021-04-15 |  |  |  |  |  |  |  |  |  |  |  |  |  |  |  |  |  |
| MWH06-9951 |  | Delay In COLO-4 Cell-1 Generator (Duration= COLO-4 Cell-1 PSR(10/12/20) to MSFT delivery) |  | 157d | 2020-11-09 A | 2021-04-15 A | MWH.06.M1000 | 100% | 2020-12-31 | 2021-06-05 |  | 7-8s wo/Holidays Clayco | 4 | 1 | 13 |  |  |  |  |  |  |  |  |
| MWH06-9954 |  | Delay In COLO-4 Cell-3 Generator (Duration= COLO-4 Cell-3 PSR(10/22/20) to MSFT delivery) |  | 132d | 2020-11-20 A | 2021-04-01 A | MWH.06.M1000 | 100% | 2020-12-31 | 2021-05-11 |  | 7-8s wo/Holidays Clayco | 4 | 3 | 13 |  |  |  |  |  |  |  |  |
| MWH06-9953 |  | Delay In COLO-4 Cell-4 Generator (Duration= COLO-4 Cell-4 PSR(11/21/20) to MSFT delivery) |  | 115d | 2020-11-30 A | 2021-03-25 A | MWH.06.M1000 | 100% | 2020-12-21 | 2021-04-14 |  | 7-8s wo/Holidays Clayco | 4 | 4 | 13 |  |  |  |  |  |  |  |  |
| MWH06-9952 |  | Delay In COLO-4 Cell-2 Generator (Duration= COLO-4 Cell-2 PSR(11/6/20) to MSFT delivery) |  | 92d | 2020-12-09 A | 2021-03-11 A | MWH.06.M1000 | 100% | 2020-12-31 | 2021-04-01 |  | 7-8s wo/Holidays Clayco | 4 | 2 | 13 |  |  |  |  |  |  |  |  |
|  | 16 | **Delay#16 NOPC-8 SE - Missing MER raceways** |  |  | 2021-03-01 | 2021-03-12 |  |  |  |  |  |  |  |  |  |  |  |  |  |  |  |  |  |
|  | 1 | **COLO-1** |  |  | 2021-03-01 | 2021-03-12 |  |  |  |  |  |  |  |  |  |  |  |  |  |  |  |  |  |
| MWH06-10145 |  | COLO1 CELL1 MER Security/Telecom Missing Raceway installation |  | 9d | 2021-03-01 A | 2021-03-10 A | MWH06-10151, MWH06-10155 | 100% | 2021-03-31 | 2021-04-09 |  |  | 1 | 1 | 16 |  |  |  |  |  |  |  |  |
| MWH06-10168 |  | COLO1 CELL2 MER Security/Telecom Missing Raceway installation |  | 9d | 2021-03-01 A | 2021-03-10 A | MWH06-10176, MWH06-10165 | 100% | 2021-03-31 | 2021-04-09 |  |  | 1 | 2 | 16 |  |  |  |  |  |  |  |  |
| MWH06-10167 |  | COLO1 CELL3 MER Security/Telecom Missing Raceway installation |  | 9d | 2021-03-03 A | 2021-03-12 A | MWH06-10172, MWH06-10164 | 100% | 2021-03-31 | 2021-04-09 |  |  | 1 | 3 | 16 |  |  |  |  |  |  |  |  |
| MWH06-10169 |  | COLO1 CELL4 MER Security/Telecom Missing Raceway installation |  | 9d | 2021-03-03 A | 2021-03-12 A | MWH06-10180, MWH06-10166 | 100% | 2021-03-31 | 2021-04-09 |  |  | 1 | 4 | 16 |  |  |  |  |  |  |  |  |
|  | 2 | **COLO-2** |  |  |  |  |  |  |  |  |  |  |  |  |  |  |  |  |  |  |  |  |  |
|  | 17 | **Delay#17 NOPC-9 SE - MER Roxtec Raceway Fixes** |  |  | 2021-01-22 | 2021-03-18 |  |  |  |  |  |  |  |  |  |  |  |  |  |  |  |  |  |
|  | 1 | **COLO-1** |  |  | 2021-01-22 | 2021-03-08 |  |  |  |  |  |  |  |  |  |  |  |  |  |  |  |  |  |
|  | 1 | **Cell-1** |  |  | 2021-01-22 | 2021-03-01 |  |  |  |  |  |  |  |  |  |  |  |  |  |  |  |  |  |
| MWH06-10154 |  | SE directs VECA to start Roxtec fixes | milestone | 0d | 2021-01-22 A | 2021-01-22 A | MWH06-9931 | 100% | 2021-02-01 | 2021-02-01 |  |  | 1 | 1 | 17 |  |  |  |  |  |  |  |  |
| MWH06-10149 |  | COLO-1 Cell-1 Rearrange Roxtec blocks per coordination layout |  | 4d | 2021-01-25 A | 2021-01-29 A | MWH06-9931 | 100% | 2021-02-01 | 2021-02-04 |  |  | 1 | 1 | 17 |  |  |  |  |  |  |  |  |
| MWH06-10151 |  | COLO-1 Cell-1 Interior MER conduit installation building side Complete March1st (MER discovery Corrections & Signoff) |  | 12d | 2021-02-01 A | 2021-02-27 A | MWH06-10149, MWH06-10154 | 100% | 2021-03-01 | 2021-03-13 |  |  | 1 | 1 | 17 |  |  |  |  |  |  |  |  |
| MWH06-10150 |  | COLO1 CELL1 Interior MER conduit installation utility side |  | 5d | 2021-02-05 A | 2021-03-01 A | MWH06-10154 | 100% | 2021-03-05 | 2021-03-10 |  |  | 1 | 1 | 17 |  |  |  |  |  |  |  |  |

| ID | WBS | Activity | Type | Duration | Start | Finish | Predecessors | Complete | Planned start | Planned finish | COLO | CELL | DELAY | COLO CRITICAL | WBS |
| --- | --- | --- | --- | --- | --- | --- | --- | --- | --- | --- | --- | --- | --- | --- | --- |
|  | 3 | **Cell-3** |  |  | 2021-01-22 | 2021-03-08 |  |  |  |  |  |  |  |  |  |
| MWH06-10173 |  | SE directs VECA to start Roxtec fixes | milestone | 0d | 2021-01-22 A | 2021-01-22 A | MWH06-9931 | 100% | 2021-02-01 | 2021-02-01 | 1 | 3 | 17 |  |  |
| MWH06-10170 |  | COLO-1 CELL3 Rearrange Roxtec blocks per coordination layout |  | 4d | 2021-01-25 A | 2021-01-29 A | MWH06-9933 | 100% | 2021-02-01 | 2021-02-04 | 1 | 3 | 17 |  |  |
| MWH06-10172 |  | COLO-1 CELL3 Interior MER conduit installation building side |  | 12d | 2021-02-01 A | 2021-03-02 A | MWH06-10170, MWH06-10151, MWH06-10173 | 100% | 2021-03-02 | 2021-03-15 | 1 | 3 | 17 |  |  |
| MWH06-10171 |  | COLO1 CELL3 Interior MER conduit installation utility side |  | 0d | 2021-03-01 A | 2021-03-08 A | MWH06-10150, MWH06-10173 | 100% | 2021-03-31 | 2021-03-31 | 1 | 3 | 17 |  |  |
|  | 2 | **Cell-2** |  |  | 2021-01-22 | 2021-03-01 |  |  |  |  |  |  |  |  |  |
| MWH06-10177 |  | SE directs VECA to start Roxtec fixes | milestone | 0d | 2021-01-22 A | 2021-01-22 A | MWH06-9931 | 100% | 2021-02-01 | 2021-02-01 | 1 | 2 | 17 |  |  |
| MWH06-10174 |  | COLO-1 CELL2 Rearrange Roxtec blocks per coordination layout |  | 4d | 2021-01-25 A | 2021-01-29 A | MWH06-9932, MWH06.C1.C2340 | 100% | 2021-02-01 | 2021-02-04 | 1 | 2 | 17 | 1 | 3 |
| MWH06-10176 |  | COLO-1 CELL2 Interior MER conduit installation building side |  | 12d | 2021-02-01 A | 2021-02-27 A | MWH06-10174, MWH06-10177 | 100% | 2021-03-01 | 2021-03-13 | 1 | 2 | 17 | 1 | 3 |
| MWH06-10175 |  | COLO1 CELL2 Interior MER conduit installation utility side |  | 5d | 2021-02-08 A | 2021-03-01 A | MWH06-10177 | 100% | 2021-03-06 | 2021-03-11 | 1 | 2 | 17 |  |  |
|  | 4 | **Cell-4** |  |  | 2021-01-22 | 2021-03-05 |  |  |  |  |  |  |  |  |  |
| MWH06-10181 |  | SE directs VECA to start Roxtec fixes | milestone | 0d | 2021-01-22 A | 2021-01-22 A | MWH06-9931 | 100% | 2021-02-01 | 2021-02-01 | 1 | 4 | 17 |  |  |
| MWH06-10178 |  | COLO-1 CELL4 Rearrange Roxtec blocks per coordination layout |  | 4d | 2021-01-25 A | 2021-01-29 A | MWH06-9934 | 100% | 2021-02-01 | 2021-02-04 | 1 | 4 | 17 | 1 |  |
| MWH06-10180 |  | COLO-1 CELL4 Interior MER conduit installation building side |  | 12d | 2021-02-01 A | 2021-03-02 A | MWH06-10178, MWH06-10176, MWH06-10181 | 100% | 2021-03-01 | 2021-03-13 | 1 | 4 | 17 | 1 | 3 |
| MWH06-10179 |  | COLO1 CELL4 Interior MER conduit installation utility side |  | 5d | 2021-03-01 A | 2021-03-05 A | MWH06-10176, MWH06-10181 | 100% | 2021-03-31 | 2021-04-05 | 1 | 4 | 17 |  |  |
|  | 2 | **COLO-2** |  |  | 2021-03-01 | 2021-03-18 |  |  |  |  |  |  |  |  |  |
|  | 1 | **Cell-1** |  |  | 2021-03-01 | 2021-03-18 |  |  |  |  |  |  |  |  |  |
| MWH06-10281 |  | COLO-2 Cell-1 Rearrange Roxtec blocks per coordination layout |  | 4d | 2021-03-01 A | 2021-03-04 A | MWH06-9935 | 100% | 2021-03-31 | 2021-04-03 | 2 | 1 | 17 |  |  |
| MWH06-10282 |  | COLO2 CELL1 Interior MER conduit installation utility side |  | 5d | 2021-03-01 A | 2021-03-05 A | MWH06-10284 | 100% | 2021-03-31 | 2021-04-05 | 1 | 1 | 17 |  |  |
| MWH06-10284 |  | SE directs VECA to start Roxtec fixes | milestone | 0d | 2021-03-01 A | 2021-03-01 A | MWH06-9935 | 100% | 2021-03-31 | 2021-03-31 | 1 | 1 | 17 |  |  |
| MWH06-10283 |  | COLO-2 Cell-1 Interior MER conduit installation building side |  | 12d | 2021-03-05 A | 2021-03-18 A | MWH06-10281, MWH06-10284 | 100% | 2021-04-05 | 2021-04-19 | 2 | 1 | 17 |  |  |
|  | 3 | **Cell-3** |  |  |  |  |  |  |  |  |  |  |  |  |  |
|  | 2 | **Cell-2** |  |  |  |  |  |  |  |  |  |  |  |  |  |
|  | 4 | **Cell-4** |  |  |  |  |  |  |  |  |  |  |  |  |  |
|  | 18 | **Delay#18 NOPC-10 SE - MER Flex Conduit Code & Specification Violation** |  |  | 2021-02-01 | 2021-03-01 |  |  |  |  |  |  |  |  |  |
|  | 1 | **COLO-1** |  |  | 2021-02-01 | 2021-03-01 |  |  |  |  |  |  |  |  |  |
| MWH06-10153 |  | SE directs VECA to start Flex Conduit fixes | milestone | 0d | 2021-02-01 A | 2021-02-01 A | MWH06-9931 | 100% | 2021-03-01 | 2021-03-01 | 1 | All | 19 |  |  |
| MWH06-10155 |  | COLO-1 Cell-1 MER Flex Conduit fixes |  | 6d | 2021-02-16 A | 2021-02-27 A | MWH06-10151, MWH06-10153 | 100% | 2021-03-02 | 2021-03-08 | 1 | 1 | 19 |  |  |
| MWH06-10164 |  | COLO-1 Cell-3 MER Flex Conduit fixes |  | 6d | 2021-02-16 A | 2021-03-01 A | MWH06-10172 SS | 100% | 2021-03-01 | 2021-03-06 | 1 | 3 | 19 |  |  |
| MWH06-10165 |  | COLO-1 Cell-2 MER Flex Conduit fixes |  | 6d | 2021-02-16 A | 2021-02-27 A | MWH06-10176 | 100% | 2021-03-02 | 2021-03-08 | 1 | 2 | 19 |  |  |
| MWH06-10166 |  | COLO-1 Cell-4 MER Flex Conduit fixes |  | 6d | 2021-02-16 A | 2021-03-01 A | MWH06-10180 SS | 100% | 2021-03-01 | 2021-03-06 | 1 | 4 | 19 | 1 | 3 |

| ID | WBS | Activity | Duration | Start | Finish | Predecessors | Complete | Planned start | Planned finish | Constraint | Calendar | COLO | TRADE | MSFT-Funding Releases | CELL | WBS | DELAY | HRA - Safety Level | HRA - Required Permit- Priority-1 | HRA - Required Permit- Priority-2 |
| --- | --- | --- | --- | --- | --- | --- | --- | --- | --- | --- | --- | --- | --- | --- | --- | --- | --- | --- | --- | --- |
|  | 2 | **COLO-2** |  |  |  |  |  |  |  |  |  |  |  |  |  |  |  |  |  |  |
|  | 19 | **Delay#19 NOPC-11 Failed Starline Busway Hangers** |  | 2021-01-19 | 2021-03-10 |  |  |  |  |  |  |  |  |  |  |  |  |  |  |  |
| MWH06-10257 |  | Determined Startline hanger Design Issue & Approve replacement hangers | 4d | 2021-01-19 A | 2021-01-28 A | MWH06.C1.C1200, MWH06.C1.C2180 | 100% | 2021-03-01 | 2021-03-04 |  |  |  |  |  |  |  |  |  |  |  |
| MWH06-10152 |  | Safety Stop work due to failed Starline Hangers | 0d | 2021-01-26 A | 2021-01-28 A | MWH06.C1.C1200 | 100% | 2021-02-01 | 2021-02-01 |  |  | 1 | 4 | 2 | All | 5 | 19 |  |  |  |
| MWH06-10156 |  | Lead time for replacement hangers from Starline | 7d | 2021-01-29 A | 2021-02-04 A | MWH06-10152, MWH06-10257 | 100% | 2021-02-01 | 2021-02-07 |  | 7-8s wo/Holidays Clayco | 1 | 4 | 2 | All | 5 | 19 |  |  |  |
| MWH06-10157 |  | COLO-1 Cell-1 Remove/ Replace busway & hangers | 4d | 2021-02-04 A | 2021-02-10 A | MWH06-10156 | 100% | 2021-03-01 | 2021-03-04 |  |  | 1 | 4 | 2 | 1 | 5 | 19 | 2 | 4 | 11 |
| MWH06-10159 |  | COLO-1 Cell-2 Remove/ Replace busway & hangers | 4d | 2021-02-04 A | 2021-02-10 A | MWH06-10156 | 100% | 2021-03-01 | 2021-03-04 |  |  | 1 | 4 | 2 | 2 | 5 | 19 | 2 | 4 | 11 |
| MWH06-10158 |  | COLO-1 Cell-3 Remove/ Replace busway & hangers | 4d | 2021-02-10 A | 2021-02-15 A | MWH06-10157 | 100% | 2021-03-05 | 2021-03-09 |  |  | 1 | 4 | 2 | 3 | 5 | 19 | 2 | 4 | 11 |
| MWH06-10160 |  | COLO-1 Cell-4 Remove/ Replace busway & hangers | 4d | 2021-02-10 A | 2021-02-15 A | MWH06-10159 | 100% | 2021-03-05 | 2021-03-09 |  |  | 1 | 4 | 2 | 4 | 5 | 19 | 2 | 4 | 11 |
| MWH06-10276 |  | COLO-2 Cell-1 Remove/ Replace busway & hangers | 4d | 2021-03-08 A | 2021-03-10 A | MWH06.C1.C3220 | 100% | 2021-03-22 | 2021-03-25 |  |  | 1 | 4 | 2 | 3 | 5 | 19 | 2 | 4 | 11 |
| MWH06-10277 |  | COLO-2 Cell-2 Remove/ Replace busway & hangers | 4d | 2021-03-08 A | 2021-03-10 A | MWH06.C1.C4210 | 100% | 2021-03-22 | 2021-03-25 |  |  | 1 | 4 | 2 | 4 | 5 | 19 | 2 | 4 | 11 |
|  | 20 | **Delay#20 Admin Gen Missing Bussing** |  | 2021-01-11 | 2021-04-20 |  |  |  |  |  |  |  |  |  |  |  |  |  |  |  |
| MWH06-10162 |  | Lead time for missing Admin Gen Bussing | 4d | 2021-01-11 A | 2021-02-01 A | MWH06-1967 | 100% | 2021-02-01 | 2021-02-04 |  |  | A |  | 2 | ADMIN | 3 | 20 |  |  |  |
| MWH06-10256 |  | Awaiting DCE approval of Non NEMA standard Lugs | 4d | 2021-02-02 A | 2021-02-17 A | MWH06-10162 | 100% | 2021-03-01 | 2021-03-04 |  |  |  |  |  |  |  |  |  |  |  |
| MWH06-10163 |  | Admin Gen Bussing Install | 4d | 2021-02-18 A | 2021-02-22 A | MWH06-10162, MWH06-10256 | 100% | 2021-03-01 | 2021-03-04 |  |  | A | 4 |  | ADMIN | 3 | 20 | 2 | 6 | 11 |
| MWH06-10331 |  | Awaiting Phase conductor lugs from NC power as per RFI#412 | 4d | 2021-02-23 A | 2021-03-05 A |  | 100% | 2021-03-01 | 2021-03-04 |  |  |  |  |  |  |  |  |  |  |  |
| MWH06-10371 |  | 6.1.41 - Incorrect Lugs for Admin Gen Main Bussing | 4d | 2021-03-22 A | 2021-04-20 A | MWH06-10331 | 100% | 2021-03-31 | 2021-04-03 | start on or after 2021-03-22 |  | 1 |  |  | ADMIN |  |  |  |  |  |
|  | 21 | **Delay#21 NOPC-12 SE Field Install MER Batteries Delay** |  | 2021-02-16 | 2021-09-01 |  |  |  |  |  |  |  |  |  |  |  |  |  |  |  |
|  | 1 | **COLO-1** |  | 2021-02-16 | 2021-03-13 |  |  |  |  |  |  |  |  |  |  |  |  |  |  |  |
| MWH06-10249 |  | COLO-1 Cell-1 SE Install UPS batteries in cabinet | 4d | 2021-02-16 A | 2021-02-20 A | MWH06.C1.C1300 | 100% | 2021-03-01 | 2021-03-04 | start on or after 2021-02-16 |  | 1 |  |  | 1 | 6 |  |  |  |  |
| A1210 |  | COLO-1 Cell-2 SE Install UPS batteries in cabinet | 6d | 2021-03-01 A | 2021-03-04 A | MWH06.C1.C2340 | 100% | 2021-03-31 | 2021-04-06 | start on or after 2021-03-01 |  | 1 |  |  | 2 | 6 |  |  |  |  |
| A1200 |  | COLO-1 Cell-3 SE Install UPS batteries in cabinet | 6d | 2021-03-08 A | 2021-03-11 A | MWH06.C1.C3300 | 100% | 2021-03-31 | 2021-04-06 | start on or after 2021-03-08 |  | 1 |  |  | 3 | 6 |  |  |  |  |
| A1190 |  | COLO-1 Cell-4 SE Install UPS batteries in cabinet | 6d | 2021-03-09 A | 2021-03-13 A | MWH06.C1.C4340 | 100% | 2021-03-31 | 2021-04-06 | start on or after 2021-03-09 |  | 1 |  |  | 4 | 6 |  |  |  |  |
|  | 2 | **COLO-2** |  | 2021-03-29 | 2021-04-26 |  |  |  |  |  |  |  |  |  |  |  |  |  |  |  |
| MWH06-10319 |  | COLO-2 Cell-1 SE Install UPS batteries in cabinet | 6d | 2021-03-29 A | 2021-04-03 A | MWH06.C2.C1330, A1190 | 100% | 2021-03-31 | 2021-04-06 |  |  | 2 |  |  | 1 | 6 |  |  |  |  |
| MWH06-10320 |  | COLO-2 Cell-2 SE Install UPS batteries in cabinet | 6d | 2021-04-05 A | 2021-04-12 A | MWH06.C2.C2340, MWH06-10319 | 100% | 2021-04-30 | 2021-05-07 |  |  | 2 |  |  | 2 | 6 |  |  |  |  |
| MWH06-10321 |  | COLO-2 Cell-3 SE Install UPS batteries in cabinet | 6d | 2021-04-13 A | 2021-04-19 A | MWH06.C2.C3310, MWH06-10320 | 100% | 2021-05-08 | 2021-05-14 |  |  | 2 |  |  | 3 | 6 |  |  |  |  |
| MWH06-10322 |  | COLO-2 Cell-4 SE Install UPS batteries in cabinet | 6d | 2021-04-20 A | 2021-04-26 A | MWH06.C2.C4280, MWH06-10321 | 100% | 2021-05-15 | 2021-05-21 |  |  | 2 |  |  | 4 | 6 |  |  |  |  |

| ID | WBS | Activity | Duration | Start | Finish | Predecessors | Complete | Remaining | Planned start | Planned finish | Total float | Free float | COLO | CELL | WBS |
| --- | --- | --- | --- | --- | --- | --- | --- | --- | --- | --- | --- | --- | --- | --- | --- |
|  | 3 | **COLO-3** |  | 2021-04-30 | 2021-08-04 |  |  |  |  |  |  |  |  |  |  |
| MWH06-10323 |  | COLO-3 Cell-1 SE Install UPS batteries in cabinet | 6d | 2021-04-30 A | 2021-05-07 A | MWH06.C3.C1280, MWH06-10322 | 100% |  | 2021-05-17 | 2021-05-24 |  |  | 1 | 1 | 6 |
| MWH06-10324 |  | COLO-3 Cell-2 SE Install UPS batteries in cabinet | 6d | 2021-05-08 A | 2021-05-14 A | MWH06.C3.C2300, MWH06-10323 | 100% |  | 2021-05-25 | 2021-06-01 |  |  | 1 | 2 | 6 |
| MWH06-10325 |  | COLO-3 Cell-3 SE Install UPS batteries in cabinet | 6d | 2021-05-19 A | 2021-05-27 A | MWH06.C3.C3260, MWH06-10324, MWH06-10530 | 100% |  | 2021-06-01 | 2021-06-07 |  |  | 1 | 3 | 5 |
| MWH06-10326 |  | COLO-3 Cell-4 SE Install UPS batteries in cabinet | 6d | 2021-05-28 A | 2021-08-04 A | MWH06.C3.C4300, MWH06-10325, MWH06-10530 | 100% |  | 2021-06-08 | 2021-06-15 |  |  | 1 | 4 | 6 |
|  | 4 | **COLO-4** |  | 2021-08-05 | 2021-09-01 |  |  |  |  |  |  |  |  |  |  |
| MWH06-10329 |  | COLO-4 Cell-3 SE Install UPS batteries in cabinet | 6d | 2021-08-05 A | 2021-08-11 A | MWH06.C4.C3270, MWH06-10326, MWH06-10530 | 100% |  | 2021-09-07 | 2021-09-13 |  |  | 1 | 3 | 6 |
| MWH06-10327 |  | COLO-4 Cell-1 SE Install UPS batteries in cabinet | 6d | 2021-08-12 A | 2021-08-19 A | MWH06.C4.C1290, MWH06-10329, MWH06-10530 | 100% |  | 2021-09-14 | 2021-09-20 |  |  | 1 | 1 | 6 |
| MWH06-10330 |  | COLO-4 Cell-4 SE Install UPS batteries in cabinet | 6d | 2021-08-20 A | 2021-08-26 A | MWH06.C4.C4290, MWH06-10327, MWH06-10530 | 100% |  | 2021-09-21 | 2021-09-28 |  |  | 1 | 4 | 6 |
| MWH06-10328 |  | COLO-4 Cell-2 SE Install UPS batteries in cabinet | 6d | 2021-08-27 A | 2021-09-01 | MWH06.C4.C2300, MWH06-10330, MWH06-10530 | 67% | 2d | 2021-09-29 | 2021-10-05 | 0d | 32d | 1 | 2 | 6 |
|  | 23 | **Delay#23 NOPC-14 MER Set Safety Delay** |  | 2021-02-05 | 2021-03-01 |  |  |  |  |  |  |  |  |  |  |
| MWH06-10336 |  | MER shipping split connection Safety Standown & RCA Review | 4d | 2021-02-05 A | 2021-02-17 A | MWH06.C2.E1300 | 100% |  | 2021-03-01 | 2021-03-04 |  |  |  |  |  |
| MWH06-10253 |  | COLO-2 CEll-2 Awaiting SE Revised tool "Come along" for MER Lift & Set | 4d | 2021-02-18 A | 2021-02-28 A | MWH06.C2.E1310 | 100% |  | 2021-03-01 | 2021-03-04 |  |  |  |  |  |
| MWH06-10259 |  | COLO-2 CEll-3 Awaiting SE Revised tool "Come along" for MER Lift & Set | 4d | 2021-02-18 A | 2021-03-01 A | MWH06.C2.E1360 | 100% |  | 2021-03-01 | 2021-03-04 |  |  |  |  |  |
|  | 24 | **Delay#24 NOPC-15 GEN Cable Bus opening Dimension Bust** |  | 2021-02-02 | 2021-05-26 |  |  |  |  |  |  |  |  |  |  |
|  | 1 | **COLO-2** |  | 2021-02-02 | 2021-03-04 |  |  |  |  |  |  |  |  |  |  |
| MWH06-10307 |  | Lead time for tube steel | 9d | 2021-02-02 A | 2021-03-03 A | MWH06-10306 | 100% |  | 2021-03-01 | 2021-03-10 |  |  |  |  |  |
| MWH06-10306 |  | RFI#432 | 4d | 2021-02-22 A | 2021-02-24 A |  | 100% |  | 2021-03-01 | 2021-03-04 |  |  |  |  |  |
| MWH06-10255 |  | COLO-2 Cell-1 Install Tube steel & Cable tray transition per RFI#432 | 4d | 2021-03-02 A | 2021-03-04 A | MWH06-10307, MWH06.C2.C1290 | 100% |  | 2021-03-22 | 2021-03-25 |  |  | 2 | 1 |  |
| MWH06-10309 |  | COLO-2 Cell-2 Install Tube steel & Cable tray transition per RFI#432 | 4d | 2021-03-02 A | 2021-03-04 A | MWH06.C2.C2330 | 100% |  | 2021-04-01 | 2021-04-05 |  |  | 2 | 2 |  |
| MWH06-10308 |  | COLO-2 Cell-3 Install Tube steel & Cable tray transition per RFI#432 | 4d | 2021-03-02 A | 2021-03-04 A | MWH06.C2.C3270 | 100% |  | 2021-03-02 | 2021-03-05 |  |  | 2 | 3 |  |
| MWH06-10310 |  | COLO-2 Cell-4 Install Tube steel & Cable tray transition per RFI#432 | 4d | 2021-03-02 A | 2021-03-04 A | MWH06.C2.C4250 | 100% |  | 2021-03-02 | 2021-03-05 |  |  | 2 | 4 |  |
|  | 3 | **COLO-3** |  | 2021-04-10 | 2021-05-26 |  |  |  |  |  |  |  |  |  |  |
| MWH06-10311 |  | COLO-3 Cell-1 Install Tube steel & Cable tray transition per RFI#432 | 1d | 2021-04-10 A | 2021-04-10 A | MWH06.C3.C1240 | 100% |  | 2021-05-07 | 2021-05-07 |  |  | 3 | 1 |  |
| MWH06-10313 |  | COLO-3 Cell-2 Install Tube steel & Cable tray transition per RFI#432 | 1d | 2021-05-13 A | 2021-05-13 A | MWH06.C3.C2290 | 100% |  |  |  |  |  | 3 | 2 |  |
| MWH06-10312 |  | COLO-3 Cell-3 Install Tube steel & Cable tray transition per RFI#432 | 1d | 2021-05-19 A | 2021-05-19 A | MWH06.C3.C3230, MWH06-10530 | 100% |  |  |  |  |  | 3 | 3 |  |
| MWH06-10314 |  | COLO-3 Cell-4 Install Tube steel & Cable tray transition per RFI#432 | 1d | 2021-05-26 A | 2021-05-26 A | MWH06.C3.C4290, MWH06-10530 | 100% |  |  |  |  |  | 3 | 4 |  |

| ID | WBS | Activity | Duration | Start | Finish | Predecessors | Complete | Planned start | Planned finish | COLO | CELL | DELAY | SE activities | WBS | Critical Path mer to COLO | COLO CRITICAL |
| --- | --- | --- | --- | --- | --- | --- | --- | --- | --- | --- | --- | --- | --- | --- | --- | --- |
|  | 4 | **COLO-4** |  | 2021-05-07 | 2021-05-15 |  |  |  |  |  |  |  |  |  |  |  |
| MWH06-10315 |  | COLO-4 Cell-1 Install Tube steel & Cable tray transition per RFI#432 | 1d | 2021-05-07 A | 2021-05-07 A | MWH06.C4.C1280, MWH06-10530 | 100% | 2021-06-02 | 2021-06-02 | 4 | 1 |  |  |  |  |  |
| MWH06-10316 |  | COLO-4 Cell-3 Install Tube steel & Cable tray transition per RFI#432 | 1d | 2021-05-07 A | 2021-05-07 A | MWH06.C4.C3260, MWH06-10530 | 100% | 2021-06-07 | 2021-06-07 | 4 | 3 |  |  |  |  |  |
| MWH06-10317 |  | COLO-4 Cell-2 Install Tube steel & Cable tray transition per RFI#432 | 1d | 2021-05-07 A | 2021-05-07 A | MWH06.C4.C2280, MWH06-10530 | 100% | 2021-06-08 | 2021-06-08 | 4 | 2 |  |  |  |  |  |
| MWH06-10318 |  | COLO-4 Cell-4 Install Tube steel & Cable tray transition per RFI#432 | 1d | 2021-05-15 A | 2021-05-15 A | MWH06.C4.C4260, MWH06-10530 | 100% | 2021-06-14 | 2021-06-14 | 4 | 4 |  |  |  |  |  |
|  | 25 | **Delay#25 VECA Safety Standown due to Admin GEN Unplanned Enegization** |  | 2021-02-01 | 2021-02-02 |  |  |  |  |  |  |  |  |  |  |  |
| MWH06-10254 |  | All Construction activities -Safety Standown due to Admin Gen unplanned Energization | 2d | 2021-02-01 A | 2021-02-02 A |  | 100% | 2021-03-01 | 2021-03-02 |  |  |  |  |  |  |  |
|  | 26 | **Delay#26 Field Modification of Tray above MSB** |  | 2021-01-18 | 2021-02-22 |  |  |  |  |  |  |  |  |  |  |  |
| MWH06-10279 |  | COLO-1 Cell-1 Field Modification of tray | 23d | 2021-01-18 A | 2021-02-15 A | MWH06.C1.C1360 | 100% | 2021-03-01 | 2021-03-27 |  |  |  |  |  |  |  |
| MWH06-10280 |  | COLO-1 Cell-2 Field Modification of tray | 26d | 2021-01-21 A | 2021-02-22 A | MWH06.C1.C2390 | 100% | 2021-03-01 | 2021-03-31 |  |  |  |  |  |  |  |
|  | B | **Pending Delays** |  | 2020-10-13 | 2021-10-22 |  |  |  |  |  |  |  |  |  |  |  |
|  | 14 | **Delay#14 Weather** |  | 2020-10-13 | 2021-07-27 |  |  |  |  |  |  |  |  |  |  |  |
| MWH06-9914 |  | #1. Rain And High Winds- 10/13/2020(half day only) | 1d | 2020-10-13 A | 2020-10-13 A | MWH.06.M1000 | 100% | 2021-01-02 | 2021-01-02 | 0 | All | 14 |  |  |  |  |
| MWH06-9915 |  | #2. Snow -12/30/20 (one full day) | 1d | 2020-12-30 A | 2020-12-30 A | MWH06-9914 | 100% | 2021-01-02 | 2021-01-02 | 0 | All | 14 |  |  |  |  |
| MWH06-10146 |  | #3. Snow- 1/27/2021(one full day) | 1d | 2021-01-27 A | 2021-01-27 A | MWH06-9915 | 100% | 2021-02-01 | 2021-02-01 | 0 | All | 14 |  |  |  |  |
| MWH06-10572 |  | #4. Extreme Heat - 6/28/21- 7/2/21(Effecting COLO-4 Yard work) | 5d | 2021-06-28 A | 2021-07-02 A |  | 100% | 2021-06-30 | 2021-07-07 |  |  |  |  |  |  |  |
| MWH06-10574 |  | #5 Extreme heat -production loss in Yards 7/1/21 through 7/14/21 (11 half days of loss) | 5d | 2021-07-09 A | 2021-07-14 A | MWH06-10572 | 100% | 2021-07-31 | 2021-08-05 |  |  |  |  |  |  |  |
| MWH06-10580 |  | #6 Extreme heat - Production loss in Yards 7/15/21 through 7/31/21 (3 half days) | 1d | 2021-07-26 A | 2021-07-27 A | MWH06-10574 | 100% | 2021-07-31 | 2021-07-31 |  |  |  |  |  |  |  |
|  | 15 | **Delay#15 WA State L&I MER Onsite Inspection Delay due to COVID-19** |  | 2021-01-08 | 2021-06-30 |  |  |  |  |  |  |  |  |  |  |  |
|  | 1 | **COLO-1** |  | 2021-01-08 | 2021-02-05 |  |  |  |  |  |  |  |  |  |  |  |
| MWH06-9931 |  | COLO-1 Cell-1 WA State L&I onsite inspection & Approval to Connect to MER | 5d | 2021-01-08 A | 2021-01-19 A | MWH06.C1.C1250, MWH06.C1.C1300 | 100% | 2021-01-11 | 2021-01-15 | 1 | 1 | 15 | SE | 3 | 1 |  |
| MWH06-9933 |  | COLO-1 CELL-2 WA State L&I onsite inspection & Approval to Connect to MER | 5d | 2021-01-11 A | 2021-01-20 A | MWH06.C1.C2340, MWH06.C1.C2270 | 100% | 2021-01-23 | 2021-01-28 | 1 | 2 | 15 | SE | 3 | 1 |  |
| MWH06-9932 |  | COLO-1 CELL-3 WA State L&I onsite inspection & Approval to Connect to MER | 5d | 2021-01-20 A | 2021-01-25 A | MWH06.C1.C3210, MWH06.C1.C3300 | 100% | 2021-02-01 | 2021-02-05 | 1 | 3 | 15 | SE | 3 | 1 |  |
| MWH06-9934 |  | COLO-1 CELL-4 WA State L&I onsite inspection & Approval to Connect to MER | 5d | 2021-01-25 A | 2021-02-05 A | MWH06.C1.C4340, MWH06.C1.C4270 | 100% | 2021-02-01 | 2021-02-05 | 1 | 4 | 15 | SE | 3 | 1 | 1 |

| ID | WBS | Activity | Duration | Start | Finish | Predecessors | Complete | Planned start | Planned finish | Total float | Free float | SE activities | COLO | CELL | WBS | DELAY | Critical Path mer to COLO | COLO CRITICAL |
| --- | --- | --- | --- | --- | --- | --- | --- | --- | --- | --- | --- | --- | --- | --- | --- | --- | --- | --- |
|  | 2 | **COLO-2** |  | 2021-02-11 | 2021-04-01 |  |  |  |  |  |  |  |  |  |  |  |  |  |
| MWH06-9935 |  | COLO-2 Cell-1 WA State L&I onsite inspection & Approval to Connect to MER | 5d | 2021-02-11 A | 2021-02-23 A | MWH06.C2.C1330, MWH06.C2.C1250 | 100% | 2021-03-12 | 2021-03-17 |  |  | SE | 2 | 1 | 3 | 15 | 2 |  |
| MWH06-9936 |  | COLO-2 Cell-2 WA State L&I onsite inspection & Approval to Connect to MER | 5d | 2021-03-15 A | 2021-03-22 A | MWH06.C2.C2340, MWH06.C2.C2290 | 100% | 2021-03-23 | 2021-03-27 |  |  | SE | 2 | 2 | 3 | 15 | 2 |  |
| MWH06-9937 |  | COLO-2 Cell-3 WA State L&I onsite inspection & Approval to Connect to MER | 5d | 2021-03-17 A | 2021-03-24 A | MWH06.C2.C3310, MWH06.C2.C3230 | 100% | 2021-03-31 | 2021-04-05 |  |  | SE | 2 | 3 | 3 | 15 | 2 |  |
| MWH06-9938 |  | COLO-2 Cell-4 WA State L&I onsite inspection & Approval to Connect to MER | 5d | 2021-03-23 A | 2021-04-01 A | MWH06.C2.C4280, MWH06.C2.C4220 | 100% | 2021-04-09 | 2021-04-15 |  |  | SE | 2 | 4 | 3 | 15 | 2 | 2,3,4 |
|  | 3 | **COLO-3** |  | 2021-04-13 | 2021-05-27 |  |  |  |  |  |  |  |  |  |  |  |  |  |
| MWH06-9939 |  | COLO-3 Cell-1 WA State L&I onsite inspection & Approval to Connect to MER | 5d | 2021-04-13 A | 2021-04-19 A | MWH06.C3.C1280, MWH06.C3.C1230 | 100% | 2021-05-08 | 2021-05-13 |  |  | SE | 3 | 1 | 3 | 15 | 3 |  |
| MWH06-9940 |  | COLO-3 Cell-2 WA State L&I onsite inspection & Approval to Connect to MER | 5d | 2021-04-21 A | 2021-04-27 A | MWH06.C3.C2300, MWH06.C3.C2260 | 100% | 2021-05-14 | 2021-05-19 |  |  | SE | 3 | 2 | 3 | 15 | 3 |  |
| MWH06-9941 |  | COLO-3 Cell-3 WA State L&I onsite inspection & Approval to Connect to MER | 5d | 2021-05-05 A | 2021-05-07 A | MWH06.C3.C3260, MWH06.C3.C3200 | 100% | 2021-05-17 | 2021-05-21 |  |  | SE | 3 | 3 | 3 | 15 | 3 |  |
| MWH06-9942 |  | COLO-3 Cell-4 WA State L&I onsite inspection & Approval to Connect to MER | 5d | 2021-05-08 A | 2021-05-27 A | MWH06.C3.C4300, MWH06.C3.C4270, MWH06-10530 | 100% | 2021-06-01 | 2021-06-05 |  |  | SE | 3 | 4 | 3 | 15 | 3 |  |
|  | 4 | **COLO-4** |  | 2021-05-08 | 2021-06-30 |  |  |  |  |  |  |  |  |  |  |  |  |  |
| MWH06-9944 |  | COLO-4 Cell-2 WA State L&I onsite inspection & Approval to Connect to MER | 5d | 2021-05-08 A | 2021-06-15 A | MWH06.C4.C2300, MWH06.C4.C2270, MWH06-10530 | 100% | 2021-06-19 | 2021-06-24 |  |  | SE | 4 | 2 | 3 | 15 | 4 |  |
| MWH06-9943 |  | COLO-4 Cell-1 WA State L&I onsite inspection & Approval to Connect to MER | 5d | 2021-05-14 A | 2021-06-04 A | MWH06.C4.C1290, MWH06.C4.C1230, MWH06-10530, MWH06-10572 | 100% | 2021-06-01 | 2021-06-05 |  |  | SE | 4 | 1 | 3 | 15 | 4 |  |
| MWH06-9945 |  | COLO-4 Cell-3 WA State L&I onsite inspection & Approval to Connect to MER | 5d | 2021-05-19 A | 2021-06-23 A | MWH06.C4.C3270, MWH06.C4.C3210, MWH06-10530, MWH06-10572 | 100% | 2021-06-01 | 2021-06-05 |  |  | SE | 4 | 3 | 3 | 15 | 4 |  |
| MWH06-9946 |  | COLO-4 Cell-4 WA State L&I onsite inspection & Approval to Connect to MER | 5d | 2021-05-29 A | 2021-06-30 A | MWH06.C4.C4290, MWH06.C4.C4250, MWH06-10530, MWH06-10572 | 100% | 2021-06-01 | 2021-06-05 |  |  | SE | 4 | 4 | 3 | 15 | 4 |  |
|  | 22 | **Delay#22 NOPC-13 February 2021 Cx Constraints** |  | 2021-01-19 | 2021-10-22 |  |  |  |  |  |  |  |  |  |  |  |  |  |
|  | 1 | **Delay#22.1 Contractor A February 2021 Cx Constraints** |  | 2021-01-19 | 2021-10-22 |  |  |  |  |  |  |  |  |  |  |  |  |  |
| MWH06-10266 |  | 6.1.09 Awaiting Rev-D for Coordination study (DRB3/SCCS/ Submittal Breaker verification) | 4d | 2021-01-19 A | 2021-03-01 A | MWH06-2540 | 100% | 2021-03-01 | 2021-03-04 |  |  | SE |  |  |  |  |  |  |
| MWH06-10265 |  | 6.1.01.0 Awaiting MER 10A HRG's (lead time= 8 weeks from 2/2/2021) | 35d | 2021-02-02 A | 2021-03-30 A |  | 100% | 2021-03-01 | 2021-04-12 |  |  | SE |  |  |  |  |  |  |
| MWH06-10270 |  | 6.1.33 URS UMS Ground Buss hole Pattern | 4d | 2021-02-08 A | 2021-02-26 A |  | 100% | 2021-03-01 | 2021-03-04 |  |  | SE |  |  |  |  |  |  |
| MWH06-10269 |  | 6.1.26.1 L2/L3 Scripts SE MER overall Script | 4d | 2021-02-10 A | 2021-03-23 A |  | 100% | 2021-03-01 | 2021-03-04 |  |  | SE |  |  |  |  |  |  |
| MWH06-10271 |  | 6.1.35 UPS battery IR Scanning | 4d | 2021-02-10 A | 2021-03-01 A |  | 100% | 2021-03-01 | 2021-03-04 |  |  | SE |  |  |  |  |  |  |
| MWH06-10251 |  | 6.1.36 Rework for Addtional circuits for UMS URS Battery charger feed upsize | 4d | 2021-02-12 A | 2021-03-01 A |  | 100% | 2021-02-01 | 2021-02-04 |  |  | SE | S | All | 6 |  |  |  |
| MWH06-10252 |  | 6.1.34.1 COLO-1 Cell-1 Rework on ATS Input conductors | 3d | 2021-02-24 A | 2021-03-01 A |  | 100% | 2021-03-01 | 2021-03-03 |  |  | SE |  |  |  |  |  |  |
| MWH06-10261 |  | 6.1.34.2 COLO-1 Cell-2 Rework on ATS Input conductors | 3d | 2021-02-24 A | 2021-03-01 A |  | 100% | 2021-03-01 | 2021-03-03 |  |  | SE |  |  |  |  |  |  |
| MWH06-10262 |  | 6.1.34.3 COLO-1 Cell-3 Rework on ATS Input conductors | 3d | 2021-02-27 A | 2021-03-03 A |  | 100% | 2021-03-01 | 2021-03-03 |  |  | SE |  |  |  |  |  |  |
| MWH06-10263 |  | 6.1.34.4 COLO-1 Cell-4 Rework on ATS Input conductors | 3d | 2021-02-27 A | 2021-03-03 A |  | 100% | 2021-03-01 | 2021-03-03 |  |  | SE |  |  |  |  |  |  |
| MWH06-10332 |  | 6.1.01.1 MER 10A HRG Retrofit COLO-1 Cell-1 | 5d | 2021-05-15 A | 2021-06-10 A | MWH06.C1.C1400, MWH06-10265 FS-4d, MWH06.D6.C1.C1180, MWH06-10509, MWH06-10530 | 100% | 2021-06-01 | 2021-06-05 |  |  | SE | 1 | 1 |  |  |  |  |
| MWH06-10333 |  | 6.1.01.4 MER 10A HRG Retrofit COLO-1 Cell-4 | 5d | 2021-06-01 A | 2021-06-10 A | MWH06-10146, MWH06.C1.C4360, MWH06.D6.C1.C4180, MWH06-10512, MWH06-10530 | 100% | 2021-06-01 | 2021-06-05 |  |  | SE | 1 | 4 |  |  |  |  |
| MWH06-10334 |  | 6.1.01.3 MER 10A HRG Retrofit COLO-1 Cell-3 | 5d | 2021-06-01 A | 2021-06-10 A | MWH06.C1.C3360, MWH06-10265, MWH06.D6.C1.C3180, MWH06-10511, MWH06-10530 | 100% | 2021-06-01 | 2021-06-05 |  |  | SE | 1 | 3 |  |  |  |  |
| MWH06-10335 |  | 6.1.01.2 MER 10A HRG Retrofit COLO-1 Cell-2 | 5d | 2021-06-01 A | 2021-06-10 A | MWH06.C1.C2380, MWH06.D6.C1.C2180, MWH06-10510, MWH06-10530 | 100% | 2021-06-01 | 2021-06-05 |  |  | SE | 1 | 2 |  |  |  |  |
| MWH06-10496 |  | 6.1.01.1 MER 10A HRG Retrofit COLO-2 Cell-1 | 5d | 2021-06-26 A | 2021-07-09 A | MWH06.C2.C1390, MWH06.D6.C2.C1180, MWH06-10513, MWH06-10530 | 100% | 2021-06-30 | 2021-07-07 |  |  | SE | 2 | 1 |  |  |  |  |
| MWH06-10497 |  | 6.1.01.2 MER 10A HRG Retrofit COLO-2 Cell-2 | 5d | 2021-06-30 A | 2021-07-07 A | MWH06.C2.C2380, MWH06.D6.C2.C2180, MWH06-10514, MWH06-10530 | 100% |  |  |  |  | SE | 2 | 2 |  |  |  |  |
| MWH06-10498 |  | 6.1.01.3 MER 10A HRG Retrofit COLO-2 Cell-3 | 5d | 2021-06-30 A | 2021-07-07 A | MWH06.C2.C3360, MWH06.D6.C2.C3180, MWH06-10515, MWH06-10530 | 100% |  |  |  |  | SE | 2 | 3 |  |  |  |  |
| MWH06-10499 |  | 6.1.01.4 MER 10A HRG Retrofit COLO-2 Cell-4 | 5d | 2021-07-13 A | 2021-07-19 A | MWH06.C2.C4320, MWH06.D6.C2.C4180, MWH06-10516, MWH06-10530 | 100% | 2021-07-06 | 2021-07-10 |  |  | SE | 2 | 4 |  |  |  |  |
| MWH06-10500 |  | 6.1.01.1 MER 10A HRG Retrofit COLO-3 Cell-1 | 5d | 2021-08-24 A | 2021-08-28 A | MWH06.C3.C1430, MWH06.D6.C3.C1140, MWH06-10517, MWH06-10530 | 100% | 2021-08-31 | 2021-09-07 |  |  | SE | 3 | 1 |  |  |  |  |
| MWH06-10503 |  | 6.1.01.2 MER 10A HRG Retrofit COLO-3 Cell-2 | 5d | 2021-08-25 A | 2021-08-30 A | MWH06.C3.C2420, MWH06.D6.C3.C2180, MWH06-10518, MWH06-10530 | 100% | 2021-09-09 | 2021-09-14 |  |  | SE | 3 | 2 |  |  |  |  |
| MWH06-10501 |  | 6.1.01.4 MER 10A HRG Retrofit COLO-3 Cell-4 | 5d | 2021-09-07 | 2021-09-11 | MWH06.C3.C4420, MWH06.D6.C3.C4180, MWH06-10520, MWH06-10530 |  |  |  | -30d | 1d | SE | 3 | 4 |  |  |  |  |
| MWH06-10502 |  | 6.1.01.3 MER 10A HRG Retrofit COLO-3 Cell-3 | 5d | 2021-09-07 | 2021-09-11 | MWH06.C3.C3390, MWH06.D6.C3.C3180, MWH06-10519, MWH06-10530 |  |  |  | -30d | 1d | SE | 3 | 3 |  |  |  |  |
| MWH06-10504 |  | 6.1.01.1 MER 10A HRG Retrofit COLO-4 Cell-1 | 5d | 2021-10-07 | 2021-10-12 | MWH06.D6.C4.C1180, MWH06-10521, MWH06-10530 |  |  |  | -32d | 0d | SE | 4 | 1 |  |  |  |  |
| MWH06-10505 |  | 6.1.01.4 MER 10A HRG Retrofit COLO-4 Cell-4 | 5d | 2021-10-07 | 2021-10-12 | MWH06.C4.C4420, MWH06.D6.C4.C4180, MWH06-10524, MWH06-10530 |  |  |  | -22d | 0d | SE | 4 | 4 |  |  |  |  |
| MWH06-10507 |  | 6.1.01.2 MER 10A HRG Retrofit COLO-4 Cell-2 | 5d | 2021-10-07 | 2021-10-12 | MWH06.C4.C2410, MWH06.D6.C4.C2180, MWH06-10522, MWH06-10530 |  |  |  | -32d | 0d | SE | 4 | 2 |  |  |  |  |
| MWH06-10506 |  | 6.1.01.3 MER 10A HRG Retrofit COLO-4 Cell-3 | 5d | 2021-10-18 | 2021-10-22 | MWH06.C4.C3420, MWH06.D6.C4.C3180, MWH06-10523, MWH06-10530 |  |  |  | -30d | 0d | SE | 4 | 3 |  |  |  |  |

Notes:
- MWH06-10496: General Comments: includes VECA QA complete

| ID | WBS | Activity | Duration | Start | Finish | Predecessors | Complete | Planned start | Planned finish | COLO | CELL |
| --- | --- | --- | --- | --- | --- | --- | --- | --- | --- | --- | --- |
|  | 2 | **Delay#22.2 Contractor D February 2021 Cx Constraints** |  | 2021-02-23 | 2021-04-28 |  |  |  |  |  |  |
| MWH06-10273 |  | 6.1.37- 6.2.01- Ground Fault setting on COLO-2 Gen MCB01 | 4d | 2021-02-23 A | 2021-04-28 A |  | 100% | 2021-03-01 | 2021-03-04 |  |  |
|  | 3 | **Delay#22.3 Contractor C February 2021 Cx Constraints** |  | 2021-03-01 | 2021-03-04 |  |  |  |  |  |  |
| MWH06-10274 |  | 6.1.38 PDU MCB01 LOTO Provisions | 4d | 2021-03-01 A | 2021-03-04 A |  | 100% |  |  |  |  |
|  | 4 | **Delay#22.4 Contractor B February 2021 Cx Constraints** |  | 2021-02-01 | 2021-05-17 |  |  |  |  |  |  |
| MWH06-10267 |  | 6.1.11 Awaiting BAS Backplanes from Siemens to VECA for Installation | 4d | 2021-02-01 A | 2021-04-13 A |  | 100% | 2021-03-01 | 2021-03-04 |  |  |
| MWH06-10481 |  | 6.1.11 Awaiting Liftstation #3 BAS Backplanes from Siemens to VECA for Installation | 4d | 2021-02-01 A | 2021-04-29 A |  | 100% | 2021-03-01 | 2021-03-04 |  |  |
| MWH06-10275 |  | 6.1.26.2 L2/L3 Scripts Siemens BAS SAT Scripts | 4d | 2021-02-09 A | 2021-03-22 A |  | 100% | 2021-03-01 | 2021-03-04 |  |  |
| MWH06-10482 |  | 6.1.11 Liftstation #3 BAS Install / Pull wire / term Backplanes | 10d | 2021-04-30 A | 2021-05-17 A | MWH06-10481 | 100% | 2021-05-17 | 2021-05-28 |  |  |
|  | 27 | **Delay#27 NOPC-16 Missing Wireway in COLOs 2-4 Generators** |  | 2020-12-29 | 2021-05-11 |  |  |  |  |  |  |
|  | 1 | **COLO-2** |  | 2020-12-29 | 2021-04-02 |  |  |  |  |  |  |
| MWH06-10372 |  | COLO-2 Cell-1 Install Missing Raceway & Bussing within generator | 4d | 2020-12-29 A | 2021-04-01 A | MWH06.C2.C1080 | 100% | 2021-03-31 | 2021-04-03 | 2 | 1 |
| MWH06-10417 |  | COLO-2 Cell-2 Install Missing Raceway & Bussing within generator | 4d | 2021-01-10 A | 2021-04-01 A | MWH06.C2.C2060 | 100% | 2021-03-31 | 2021-04-03 | 2 | 2 |
| MWH06-10418 |  | COLO-2 Cell-3 Install Missing Raceway & Bussing within generator | 4d | 2021-01-20 A | 2021-04-02 A | MWH06.C2.C3080 | 100% | 2021-03-31 | 2021-04-03 | 2 | 3 |
| MWH06-10419 |  | COLO-2 Cell-4 Install Missing Raceway & Bussing within generator | 4d | 2021-01-23 A | 2021-04-02 A | MWH06.C2.C4060 | 100% | 2021-03-31 | 2021-04-03 | 2 | 4 |
|  | 3 | **COLO-3** |  | 2021-04-05 | 2021-04-23 |  |  |  |  |  |  |
| MWH06-10420 |  | COLO-3 Cell-1 Install Missing Raceway & Bussing within generator | 3d | 2021-04-05 A | 2021-04-08 A | MWH06-10419, MWH06.C3.C1110 | 100% | 2021-04-26 | 2021-04-28 | 3 | 1 |
| MWH06-10421 |  | COLO-3 Cell-2 Install Missing Raceway & Bussing within generator | 3d | 2021-04-09 A | 2021-04-14 A | MWH06-10420, MWH06.C3.C2110 | 100% | 2021-04-29 | 2021-05-03 | 3 | 2 |
| MWH06-10423 |  | COLO-3 Cell-4 Install Missing Raceway & Bussing within generator | 3d | 2021-04-15 A | 2021-04-19 A | MWH06-10421, MWH06.C3.C4100 | 100% | 2021-05-04 | 2021-05-06 | 3 | 4 |
| MWH06-10422 |  | COLO-3 Cell-3 Install Missing Raceway & Bussing within generator | 3d | 2021-04-20 A | 2021-04-23 A | MWH06-10423, MWH06.C3.C3080 | 100% | 2021-05-07 | 2021-05-10 | 3 | 3 |
|  | 2 | **COLO-4** |  | 2021-04-26 | 2021-05-11 |  |  |  |  |  |  |
| MWH06-10425 |  | COLO-4 Cell-2 Install Missing Raceway & Bussing within generator | 3d | 2021-04-26 A | 2021-04-29 A | MWH06-10422, MWH06.C4.C2100 | 100% | 2021-05-11 | 2021-05-13 | 4 | 2 |
| MWH06-10427 |  | COLO-4 Cell-4 Install Missing Raceway & Bussing within generator | 3d | 2021-04-30 A | 2021-05-04 A | MWH06-10425, MWH06.C4.C4100 | 100% | 2021-05-17 | 2021-05-19 | 4 | 4 |
| MWH06-10426 |  | COLO-4 Cell-3 Install Missing Raceway & Bussing within generator | 3d | 2021-05-05 A | 2021-05-07 A | MWH06-10427, MWH06.C4.C3100 | 100% | 2021-05-20 | 2021-05-24 | 4 | 3 |
| MWH06-10424 |  | COLO-4 Cell-1 Install Missing Raceway & Bussing within generator | 3d | 2021-05-08 A | 2021-05-11 A | MWH06-10426, MWH06.C4.C1100 | 100% | 2021-05-25 | 2021-05-27 | 4 | 1 |

| ID | WBS | Activity | Duration | Start | Finish | Predecessors | Complete | Planned start | Planned finish | Constraint | SE activities | COLO | CELL |
| --- | --- | --- | --- | --- | --- | --- | --- | --- | --- | --- | --- | --- | --- |
|  | 28 | **Delay#28 NOPC-17 March 2021 Cx Constraints** |  | 2021-03-08 | 2021-08-07 |  |  |  |  |  |  |  |  |
|  | 1 | **Delay#28.1 Contractor A** |  | 2021-03-15 | 2021-08-07 |  |  |  |  |  |  |  |  |
| MWH06-10373 |  | 6.1.43- Updates to Rev D SCCS - Reprint Arc Flash Labels | 28d | 2021-03-15 A | 2021-03-22 A | MWH06-2540 | 100% | 2021-03-15 | 2021-04-17 | start on or after 2021-03-08 | SE |  |  |
| MWH06-10376 |  | 6.1.44- MER Battery Monitoring Software – Constraint to EPMS checkouts/Point – Point(needed by 4/23) | 68d | 2021-03-15 A | 2021-08-07 A | MWH06.C1.C1300, MWH06-10530 | 100% | 2021-03-15 | 2021-06-07 | start on or after 2021-03-08 | SE |  |  |
| MWH06-10381 |  | 6.1.46- Site UPM Inspections | 28d | 2021-03-22 A | 2021-04-09 A | MWH06-10375 FF | 100% | 2021-03-15 | 2021-04-17 | start on or after 2021-03-08 | SE |  |  |
| MWH06-10374 |  | 6.1.43- Updates to Rev D SCCS - Reprint Arc Flash Labels- 2weeks- fab and ship | 1d | 2021-03-23 A | 2021-04-05 A | MWH06-10373 | 100% | 2021-04-06 | 2021-04-06 | start on or after 2021-03-08 | SE |  |  |
| MWH06-10382 |  | 6.1.47- COLO-1 Cell-2 UPS01- Factory Test thermal event | 16d | 2021-03-23 A | 2021-04-21 A |  | 100% | 2021-03-15 | 2021-04-02 | start on or after 2021-03-08 | SE |  |  |
| MWH06-10375 |  | 6.1.43- Updates to Rev D SCCS - Reprint Arc Flash Labels- 1 week to install | 6d | 2021-04-06 A | 2021-04-09 A | MWH06-10374 | 100% | 2021-04-07 | 2021-04-14 | start on or after 2021-03-08 | SE |  |  |
|  | 2 | **Delay#28.2 Contractor D** |  | 2021-03-08 | 2021-04-08 |  |  |  |  |  |  |  |  |
| MWH06-10370 |  | 6.1.40- 480V house power to Gen Enclousure is Fed OH vs UG | 28d | 2021-03-08 A | 2021-04-08 A |  | 100% | 2021-03-15 | 2021-04-17 | start on or after 2021-03-08 |  |  |  |
|  | 3 | **Delay#28.3 Contractor C February** |  |  |  |  |  |  |  |  |  |  |  |
|  | 4 | **Delay#28.4 Contractor B** |  |  |  |  |  |  |  |  |  |  |  |
|  | 29 | **Delay#29 NOPC-18 MSB01 PDU Feeder Breaker Safety Space Constraint** |  | 2021-04-01 | 2021-10-15 |  |  |  |  |  |  |  |  |
|  | 1 | **COLO-1** |  | 2021-04-01 | 2021-05-28 |  |  |  |  |  |  |  |  |
| MWH06-10431 |  | Downtime awaiting solution for safety space constraint | 15d | 2021-04-01 A | 2021-04-20 A |  | 100% | 2021-04-26 | 2021-05-13 |  | SE | 1 | 1 |
|  | 1 | **Cell-1** |  | 2021-04-20 | 2021-05-14 |  |  |  |  |  |  |  |  |
| MWH06-10432 |  | NOPC-18 Remove COLO-1 Cell-1 transformer | 1d | 2021-04-20 A | 2021-04-20 A | MWH06-10431 | 100% | 2021-04-26 | 2021-04-26 |  | SE | 1 | 1 |
| MWH06-10471 |  | Rubicon MSB inspection complete (ready for transformer reinstall) | 5d | 2021-04-26 A | 2021-05-03 A | MWH06.C1.C1400 | 100% | 2021-04-26 | 2021-04-30 |  | SE | 1 | 1 |
| MWH06-10509 |  | NOPC-18 Reinstall COLO-1 Cell-1 transformer | 5d | 2021-05-04 A | 2021-05-14 A | MWH06.D6.C1.C1180 FF, MWH06-10471, MWH06.C1.C1400, MWH06.D6.C1.C1180 | 100% | 2021-05-25 | 2021-05-29 |  | SE | 1 | 1 |
|  | 2 | **Cell-2** |  | 2021-04-21 | 2021-05-14 |  |  |  |  |  |  |  |  |
| MWH06-10433 |  | NOPC-18 Remove COLO-1 Cell-2 transformer | 1d | 2021-04-21 A | 2021-04-21 A | MWH06-10431, MWH06-10432 | 100% | 2021-04-26 | 2021-04-26 |  | SE | 1 | 2 |
| MWH06-10472 |  | MSB inspection complete (ready for transformer reinstall) | 5d | 2021-04-26 A | 2021-05-03 A | MWH06.C1.C2380 | 100% | 2021-05-17 | 2021-05-21 |  | SE | 1 | 2 |
| MWH06-10510 |  | NOPC-18 Reinstall COLO-1 Cell-2 transformer | 5d | 2021-05-04 A | 2021-05-14 A | MWH06-10472, MWH06.C1.C2380, MWH06.D6.C1.C2180 | 100% | 2021-06-01 | 2021-06-05 |  | SE | 1 | 2 |
|  | 3 | **Cell-3** |  | 2021-04-26 | 2021-05-28 |  |  |  |  |  |  |  |  |
| MWH06-10434 |  | NOPC-18 Remove COLO-1 Cell-3 transformer | 1d | 2021-04-26 A | 2021-04-26 A | MWH06.C1.C1400, MWH06.C1.C3390, MWH06-10433 | 100% |  |  |  | SE | 1 | 3 |
| MWH06-10473 |  | MSB inspection complete (ready for transformer reinstall) | 5d | 2021-05-06 A | 2021-05-12 A | MWH06.C1.C3360 | 100% | 2021-05-17 | 2021-05-21 |  | SE | 1 | 3 |
| MWH06-10511 |  | NOPC-18 Reinstall COLO-1 Cell-3 transformer | 8d | 2021-05-26 A | 2021-05-28 A | MWH06-10473, MWH06.C1.C3360, MWH06.D6.C1.C3180, MWH06-10530 | 100% | 2021-06-01 | 2021-06-09 |  | SE | 1 | 3 |

| ID | WBS | Activity | Duration | Start | Finish | Predecessors | Complete | Planned start | Planned finish | Constraint | SE activities | COLO | CELL |
| --- | --- | --- | --- | --- | --- | --- | --- | --- | --- | --- | --- | --- | --- |
|  | 4 | **Cell-4** |  | 2021-05-14 | 2021-05-28 |  |  |  |  |  |  |  |  |
| MWH06-10435 |  | NOPC-18 Remove COLO-1 Cell-4 transformer | 1d | 2021-05-14 A | 2021-05-15 A | MWH06.C1.C2380, MWH06-10434 | 100% | 2021-05-17 | 2021-05-17 |  | SE | 1 | 4 |
| MWH06-10474 |  | MSB inspection complete (ready for transformer reinstall) | 5d | 2021-05-21 A | 2021-05-27 A | MWH06.C1.C4360, MWH06-10530 | 100% | 2021-06-01 | 2021-06-05 |  | SE | 1 | 4 |
| MWH06-10512 |  | NOPC-18 Reinstall COLO-1 Cell-4 transformer | 8d | 2021-05-26 A | 2021-05-28 A | MWH06-10474, MWH06.C1.C4360, MWH06.D6.C1.C4180, MWH06-10530 | 100% | 2021-06-01 | 2021-06-09 |  | SE | 1 | 4 |
|  | 2 | **COLO-2** |  | 2021-05-11 | 2021-07-12 |  |  |  |  |  |  |  |  |
|  | 1 | **Cell-1** |  | 2021-05-11 | 2021-06-26 |  |  |  |  |  |  |  |  |
| MWH06-10444 |  | NOPC-18 Remove COLO-2 Cell-1 transformer | 43d | 2021-05-11 A | 2021-06-08 A | MWH06.C2.C1430, MWH06-10530 | 100% | 2021-06-01 | 2021-07-23 |  | SE | 2 | 1 |
| MWH06-10513 |  | NOPC-18 Reinstall COLO-2 Cell-1 transformer | 8d | 2021-06-17 A | 2021-06-26 A | MWH06.C2.C1390, MWH06.D6.C2.C1180, MWH06-10530 | 100% | 2021-07-22 | 2021-07-31 |  | SE | 2 | 1 |
|  | 2 | **Cell-2** |  | 2021-05-11 | 2021-06-30 |  |  |  |  |  |  |  |  |
| MWH06-10445 |  | NOPC-18 Remove COLO-2 Cell-2 transformer | 29d | 2021-05-11 A | 2021-06-17 A | MWH06.C2.C2410, MWH06-10530 | 100% | 2021-06-02 | 2021-07-08 |  | SE | 2 | 2 |
| MWH06-10514 |  | NOPC-18 Reinstall COLO-2 Cell-2 transformer | 8d | 2021-06-24 A | 2021-06-30 A | MWH06.C2.C2380, MWH06.D6.C2.C2180, MWH06-10530 | 100% | 2021-07-23 | 2021-08-02 |  | SE | 2 | 2 |
|  | 3 | **Cell-3** |  | 2021-05-26 | 2021-06-26 |  |  |  |  |  |  |  |  |
| MWH06-10446 |  | NOPC-18 Remove COLO-2 Cell-3 transformer | 1d | 2021-05-26 A | 2021-06-14 A | MWH06.C2.C3430, MWH06-10530 | 100% | 2021-06-01 | 2021-06-01 |  | SE | 2 | 3 |
| MWH06-10515 |  | NOPC-18 Reinstall COLO-2 Cell-3 transformer | 8d | 2021-06-21 A | 2021-06-26 A | MWH06.C2.C3360, MWH06.D6.C2.C3180, MWH06-10530 | 100% | 2021-07-29 | 2021-08-06 |  | SE | 2 | 3 |
|  | 4 | **Cell-4** |  | 2021-05-25 | 2021-07-12 |  |  |  |  |  |  |  |  |
| MWH06-10447 |  | NOPC-18 Remove COLO-2 Cell-4 transformer | 1d | 2021-05-25 A | 2021-06-26 A | MWH06.C2.C4380, MWH06-10530 | 100% | 2021-06-01 | 2021-06-01 |  | SE | 2 | 4 |
| MWH06-10516 |  | NOPC-18 Reinstall COLO-2 Cell-4 transformer | 3d | 2021-07-09 A | 2021-07-12 A | MWH06.C2.C4320, MWH06.D6.C2.C4180, MWH06-10530 | 100% | 2021-06-30 | 2021-07-02 |  | SE | 2 | 4 |
|  | 3 | **COLO-3** |  | 2021-07-16 | 2021-09-03 |  |  |  |  |  |  |  |  |
|  | 1 | **Cell-1** |  | 2021-07-16 | 2021-07-29 |  |  |  |  |  |  |  |  |
| MWH06-10462 |  | NOPC-18 Remove COLO-3 Cell-1 transformer | 1d | 2021-07-16 A | 2021-07-16 A | MWH06.C3.C1430 SS+19d, MWH06.C3.C1360, MWH06-10530 | 100% | 2021-08-12 | 2021-08-12 | as late as possible | SE | 3 | 1 |
| MWH06-10517 |  | NOPC-18 Reinstall COLO-3 Cell-1 transformer | 6d | 2021-07-22 A | 2021-07-29 A | MWH06.C3.C1430, MWH06.D6.C3.C1140, MWH06-10530 | 100% | 2021-07-31 | 2021-08-06 |  | SE | 3 | 1 |
|  | 2 | **Cell-2** |  | 2021-07-24 | 2021-08-06 |  |  |  |  |  |  |  |  |
| MWH06-10463 |  | NOPC-18 Remove COLO-3 Cell-2 transformer | 1d | 2021-07-24 A | 2021-07-24 A | MWH06.C3.C2420 SS+19d, MWH06.C3.C2350, MWH06-10530 | 100% | 2021-07-31 | 2021-07-31 | as late as possible | SE | 3 | 2 |
| MWH06-10518 |  | NOPC-18 Reinstall COLO-3 Cell-2 transformer | 6d | 2021-07-31 A | 2021-08-06 A | MWH06.C3.C2420, MWH06.D6.C3.C2180, MWH06-10530 | 100% | 2021-08-31 | 2021-09-08 |  | SE | 3 | 2 |

| ID | WBS | Activity | Duration | Start | Finish | Predecessors | Complete | Remaining | Planned start | Planned finish | Total float | Free float | Constraint | SE activities | COLO | CELL |
| --- | --- | --- | --- | --- | --- | --- | --- | --- | --- | --- | --- | --- | --- | --- | --- | --- |
|  | 3 | **Cell-3** |  | 2021-08-19 | 2021-09-03 |  |  |  |  |  |  |  |  |  |  |  |
| MWH06-10464 |  | NOPC-18 Remove COLO-3 Cell-3 transformer | 1d | 2021-08-19 A | 2021-08-19 A | MWH06.C3.C3390 SS+19d, MWH06.C3.C3350 | 100% |  | 2021-08-31 | 2021-08-31 |  |  | as late as possible | SE | 3 | 3 |
| MWH06-10519 |  | NOPC-18 Reinstall COLO-3 Cell-3 transformer | 6d | 2021-08-27 A | 2021-09-03 | MWH06.C3.C3390, MWH06.D6.C3.C3180, MWH06-10530 | 33% | 4d | 2021-08-31 | 2021-09-08 | -30d | 0d |  | SE | 3 | 3 |
|  | 4 | **Cell-4** |  | 2021-08-04 | 2021-09-03 |  |  |  |  |  |  |  |  |  |  |  |
| MWH06-10465 |  | NOPC-18 Remove COLO-3 Cell-4 transformer | 1d | 2021-08-04 A | 2021-08-04 A | MWH06.C3.C4420 SS+19d, MWH06.C3.C4380, MWH06-10530 | 100% |  | 2021-08-31 | 2021-08-31 |  |  |  | SE | 3 | 4 |
| MWH06-10520 |  | NOPC-18 Reinstall COLO-3 Cell-4 transformer | 6d | 2021-08-27 A | 2021-09-03 | MWH06.C3.C4420, MWH06.D6.C3.C4180, MWH06-10530 | 33% | 4d | 2021-08-31 | 2021-09-08 | -30d | 0d |  | SE | 3 | 4 |
|  | 4 | **COLO-4** |  | 2021-09-18 | 2021-10-15 |  |  |  |  |  |  |  |  |  |  |  |
|  | 1 | **Cell-1** |  | 2021-09-18 | 2021-10-06 |  |  |  |  |  |  |  |  |  |  |  |
| MWH06-10453 |  | NOPC-18 Remove COLO-4 Cell-1 transformer | 1d | 2021-09-18 | 2021-09-18 | MWH06.C4.C1420 SS+19d, MWH06.C4.C1340, MWH06-10530 |  |  |  |  | -32d | 0d |  | SE | 4 | 1 |
| MWH06-10521 |  | NOPC-18 Reinstall COLO-4 Cell-1 transformer | 6d | 2021-09-30 | 2021-10-06 | MWH06.C4.C1420, MWH06.D6.C4.C1180, MWH06-10530 |  |  |  |  | -32d | 0d |  | SE | 4 | 1 |
|  | 2 | **Cell-2** |  | 2021-09-18 | 2021-10-06 |  |  |  |  |  |  |  |  |  |  |  |
| MWH06-10454 |  | NOPC-18 Remove COLO-4 Cell-2 transformer | 1d | 2021-09-18 | 2021-09-18 | MWH06.C4.C2410 SS+19d, MWH06.C4.C2360, MWH06-10530 |  |  |  |  | -32d | 0d |  | SE | 4 | 2 |
| MWH06-10522 |  | NOPC-18 Reinstall COLO-4 Cell-2 transformer | 6d | 2021-09-30 | 2021-10-06 | MWH06.C4.C2410, MWH06.D6.C4.C2180, MWH06-10530 |  |  |  |  | -32d | 0d |  | SE | 4 | 2 |
|  | 3 | **Cell-3** |  | 2021-09-29 | 2021-10-15 |  |  |  |  |  |  |  |  |  |  |  |
| MWH06-10455 |  | NOPC-18 Remove COLO-4 Cell-3 transformer | 1d | 2021-09-29 | 2021-09-29 | MWH06.C4.C3420 SS+19d, MWH06.C4.C3390, MWH06-10530 |  |  |  |  | -30d | 0d |  | SE | 4 | 3 |
| MWH06-10523 |  | NOPC-18 Reinstall COLO-4 Cell-3 transformer | 6d | 2021-10-09 | 2021-10-15 | MWH06.C4.C3420, MWH06.D6.C4.C3180, MWH06-10530 |  |  |  |  | -30d | 0d |  | SE | 4 | 3 |
|  | 4 | **Cell-4** |  | 2021-09-18 | 2021-10-06 |  |  |  |  |  |  |  |  |  |  |  |
| MWH06-10456 |  | NOPC-18 Remove COLO-4 Cell-4 transformer | 1d | 2021-09-18 | 2021-09-18 | MWH06.C4.C4420 SS+19d, MWH06.C4.C4390, MWH06-10530 |  |  |  |  | -22d | 0d |  | SE | 4 | 4 |
| MWH06-10524 |  | NOPC-18 Reinstall COLO-4 Cell-4 transformer | 6d | 2021-09-30 | 2021-10-06 | MWH06.C4.C4420, MWH06.D6.C4.C4180, MWH06-10530 |  |  |  |  | -22d | 0d |  | SE | 4 | 4 |
|  | 30 | **Delay#30 NOPC-19 COVID-19 Electrician Quarantine Constraint** |  | 2021-04-13 | 2021-04-24 |  |  |  |  |  |  |  |  |  |  |  |
| MWH06-10470 |  | PDU termination crew downtime due to COVID-19 | 10d | 2021-04-13 A | 2021-04-24 A |  | 100% |  | 2021-04-24 | 2021-05-06 |  |  |  |  |  |  |
|  | 31 | **Delay#31 NOPC-20 April 2021 Cx Constraints** |  | 2021-04-06 | 2021-06-16 |  |  |  |  |  |  |  |  |  |  |  |
|  | 1 | **Delay#31.1 Contractor A** |  | 2021-04-06 | 2021-06-16 |  |  |  |  |  |  |  |  |  |  |  |
| MWH06-10428 |  | 6.2.03- Replace ADP01 faulty trip units | 4d | 2021-04-06 A | 2021-05-07 A | MWH06-10530 | 100% |  | 2021-03-31 | 2021-04-03 |  |  |  | SE |  |  |
| MWH06-10483 |  | 6.1.49 - COLO-1 Cell-1 Awaiting Ground Lug solution, procurement, installation of labelling ATS 01-06 | 42d | 2021-04-14 A | 2021-06-16 A | MWH06.C1.C4410, MWH06.C1.C2420, MWH06.C1.C3390, MWH06.C1.C1410, MWH06-10530 | 100% |  | 2021-04-30 | 2021-06-22 |  |  |  | SE |  |  |
| MWH06-10436 |  | 6.1.51-COLO-1 Cell-1,2 Factory conductors not terminated per drawings | 4d | 2021-04-20 A | 2021-04-27 A |  | 100% |  | 2021-04-30 | 2021-05-05 |  |  |  | SE |  |  |
| MWH06-10484 |  | 6.1.50- ADP01- FCB23/FCB24 Two wire circuit design change and potential SCCS change | 4d | 2021-04-20 A | 2021-06-09 A | MWH06-10530 | 100% |  | 2021-04-30 | 2021-05-05 |  |  |  | SE |  |  |
| MWH06-10508 |  | 6.1.59 (6.1.51 carryover) -COLO-1 Cell-1,2 Factory conductors exertherm corrections | 4d | 2021-04-20 A | 2021-05-20 A | MWH06-10530 | 100% |  | 2021-04-30 | 2021-05-05 |  |  |  | SE |  |  |
| MWH06-10491 |  | 6.1.53-COLO-1 Cell-1,2 UPS01, PNL01 awaiting missing breakers | 4d | 2021-04-21 A | 2021-04-27 A |  | 100% |  | 2021-04-30 | 2021-05-05 |  |  |  | SE |  |  |
| MWH06-10492 |  | 6.1.53-COLO-1 Cell-1,2,3,4 UPS01, PNL01 Install/ term Missing breakers | 4d | 2021-04-21 A | 2021-05-14 A | MWH06-10491 | 100% |  | 2021-04-30 | 2021-05-05 |  |  |  | SE |  |  |
| MWH06-10534 |  | 6.1.50- SCCS Revision#10 (RFI-540) | 4d | 2021-05-26 A | 2021-06-15 A | MWH06-10530 | 100% |  | 2021-04-30 | 2021-05-05 |  |  |  | SE |  |  |

| ID | WBS | Activity | Duration | Start | Finish | Predecessors | Complete | Planned start | Planned finish | Constraint | COLO | CELL | SE activities |
| --- | --- | --- | --- | --- | --- | --- | --- | --- | --- | --- | --- | --- | --- |
|  | 2 | **Delay#31.2 Contractor D** |  |  |  |  |  |  |  |  |  |  |  |
|  | 3 | **Delay#31.3 Contractor C February** |  |  |  |  |  |  |  |  |  |  |  |
|  | 4 | **Delay#31.4 Contractor B** |  | 2021-04-21 | 2021-05-12 |  |  |  |  |  |  |  |  |
| MWH06-10480 |  | 6.1.54- Install Breaktank parts | 4d | 2021-04-21 A | 2021-05-12 A |  | 100% | 2021-04-26 | 2021-04-29 |  |  |  |  |
| MWH06-10479 |  | 6.1.54- TCM Awaiting Admin Siemens Break tank parts | 11d | 2021-04-30 A | 2021-05-12 A |  | 100% | 2021-05-17 | 2021-05-29 |  |  |  |  |
|  | 5 | **Delay#31.5 Contractor E** |  | 2021-04-26 | 2021-04-29 |  |  |  |  |  |  |  |  |
| MWH06-10429 |  | 6.2.03- Replace Damaged UPM in COLO-4 Cell-4 | 3d | 2021-04-26 A | 2021-04-29 A |  | 100% | 2021-05-06 | 2021-05-08 | start on or after 2021-04-22 |  |  |  |
|  | 6 | **Delay#31.6 BAC** |  | 2021-04-23 | 2021-05-28 |  |  |  |  |  |  |  |  |
| MWH06-10475 |  | 6.1.55-COLO-1 - FC Factoy Re-wire (RFI-502) | 4d | 2021-04-23 A | 2021-05-28 A | MWH06-10530 | 100% | 2021-04-26 | 2021-04-29 |  | 1 | 4 |  |
| MWH06-10476 |  | 6.1.55-COLO-2 - FC Factoy Re-wire (RFI-502) | 4d | 2021-05-24 A | 2021-05-28 A | MWH06-10475, MWH06-10530 | 100% | 2021-06-01 | 2021-06-04 |  |  |  |  |
| MWH06-10477 |  | 6.1.55-COLO-3 - FC Factoy Re-wire (RFI-502) | 4d | 2021-05-24 A | 2021-05-28 A | MWH06-10476, MWH06-10530 | 100% | 2021-06-05 | 2021-06-09 |  |  |  |  |
| MWH06-10478 |  | 6.1.55-COLO-4 - FC Factoy Re-wire (RFI-502) | 4d | 2021-05-24 A | 2021-05-28 A | MWH06-10477, MWH06-10530 | 100% | 2021-06-10 | 2021-06-15 |  |  |  |  |
|  | 32 | **Delay#32 Missing Admin Arc flash Labels (RFI-520)** |  | 2021-04-29 | 2021-05-28 |  |  |  |  |  |  |  |  |
| MWH06-10486 |  | 6.1.57 -Awaiting revised coordination study #9 | 5d | 2021-04-29 A | 2021-05-20 A | MWH06-10530 | 100% | 2021-04-30 | 2021-05-06 |  |  |  |  |
| MWH06-10487 |  | Reprint revised panel 3,4 Arc flash labels | 5d | 2021-05-21 A | 2021-05-28 A | MWH06-10486, MWH06-10530 | 100% | 2021-06-01 | 2021-06-05 | start on or after 2021-05-20 |  |  |  |
| MWH06-10488 |  | Print new DC Arc flash labels for Admin ELP | 5d | 2021-05-21 A | 2021-05-28 A | MWH06-10486, MWH06-10530 | 100% | 2021-06-01 | 2021-06-05 | start on or after 2021-05-20 |  |  |  |
|  | 33 | **Delay#33 NOPC-22 May 2021 Cx Constraints** |  | 2021-04-30 | 2021-06-24 |  |  |  |  |  |  |  |  |
|  | 1 | **Delay#33.1 Contractor A** |  | 2021-04-30 | 2021-06-24 |  |  |  |  |  |  |  |  |
| MWH06-10532 |  | 6.1.56 - COLO-1 Awaiting MSB/ADP Ground Lug replacements, Installation of labelling | 21d | 2021-04-30 A | 2021-06-16 A |  | 100% | 2021-04-30 | 2021-05-26 |  |  |  | SE |
| MWH06-10525 |  | 6.1.58-RFI-528- COLO-1 - SF/RF Circuitry & terminal block rework | 4d | 2021-05-03 A | 2021-06-24 A | MWH06-10530 | 100% | 2021-05-17 | 2021-05-20 |  |  |  | SE |
| MWH06-10527 |  | 6.1.63- COLO1-UPS01-PNL01 Compass Issues Constraining L3’s | 4d | 2021-05-12 A | 2021-06-01 A | MWH06-10530 | 100% | 2021-05-17 | 2021-05-20 |  |  |  | SE |
|  | 2 | **Delay#33.2 Contractor D** |  |  |  |  |  |  |  |  |  |  |  |
|  | 3 | **Delay#33.3 Contractor C February** |  |  |  |  |  |  |  |  |  |  |  |
|  | 4 | **Delay#33.4 Contractor B** |  |  |  |  |  |  |  |  |  |  |  |
|  | 6 | **Delay#33.6 BAC** |  |  |  |  |  |  |  |  |  |  |  |
|  | 5 | **Delay#33.5 Contractor E** |  |  |  |  |  |  |  |  |  |  |  |
|  | 34 | **Delay#34 Site stand-down (Diversity training)** |  | 2021-05-15 | 2021-05-21 |  |  |  |  |  |  |  |  |
| MWH06-10530 |  | All trades stand down | 3d | 2021-05-15 A | 2021-05-18 A |  | 100% | 2021-06-01 | 2021-06-03 |  |  |  |  |
| MWH06-10531 |  | Veca standown | 6d | 2021-05-15 A | 2021-05-21 A |  | 100% | 2021-06-01 | 2021-06-07 |  |  |  |  |

| ID | WBS | Activity | Duration | Start | Finish | Predecessors | Complete | Remaining | Planned start | Planned finish | Total float | Free float | SE activities |
| --- | --- | --- | --- | --- | --- | --- | --- | --- | --- | --- | --- | --- | --- |
|  | 35 | **Delay#35- NOPC-23 - RFI548- MER-Contractor G battery disconnect modifications** |  | 2021-06-10 | 2021-09-09 |  |  |  |  |  |  |  |  |
|  | 1 | **Admin/COLO-1** |  | 2021-06-10 | 2021-07-09 |  |  |  |  |  |  |  |  |
| MWH06-10542 |  | RFI-548 COLO MSB to UPS Battery disconnect solution approval | 3d | 2021-06-10 A | 2021-06-15 A |  | 100% |  | 2021-06-01 | 2021-06-03 |  |  |  |
| MWH06-10539 |  | COLO-1 Cell-2 MER-UPS Battery Disconnect modifications rework | 4d | 2021-06-16 A | 2021-06-21 A | MWH06-10535 SS | 100% |  | 2021-06-28 | 2021-07-01 |  |  |  |
| MWH06-10544 |  | RFI-552 Admin MSB to UPS Battery disconnect solution approval | 6d | 2021-06-16 A | 2021-06-23 A |  | 100% |  | 2021-06-01 | 2021-06-07 |  |  |  |
| MWH06-10535 |  | COLO-1 Cell-1 MER-UPS Battery Disconnect modifications rework | 4d | 2021-06-16 A | 2021-06-21 A | MWH06-10542 | 100% |  | 2021-06-16 | 2021-06-19 |  |  |  |
| MWH06-10540 |  | COLO-1 Cell-3 MER-UPS Battery Disconnect modifications rework | 4d | 2021-06-17 A | 2021-06-22 A | MWH06-10535 SS+1d | 100% |  | 2021-06-28 | 2021-07-01 |  |  |  |
| MWH06-10541 |  | COLO-1 Cell-4 MER-UPS Battery Disconnect modifications rework | 4d | 2021-06-17 A | 2021-06-22 A | MWH06-10540 SS, MWH06-10539 SS+1d | 100% |  | 2021-06-01 | 2021-06-04 |  |  |  |
| MWH06-10543 |  | ADMIN-UPS Battery Disconnect modifications rework | 4d | 2021-06-24 A | 2021-07-09 A | MWH06-10544 | 100% |  | 2021-06-16 | 2021-06-19 |  |  |  |
|  | 2 | **COLO-2** |  | 2021-06-30 | 2021-07-23 |  |  |  |  |  |  |  |  |
| MWH06-10545 |  | COLO-2 Cell-2 MER-UPS Battery Disconnect modifications rework | 4d | 2021-06-30 A | 2021-07-21 A | MWH06-10546 SS, MWH06.D6.C2.C2180 | 100% |  | 2021-06-30 | 2021-07-06 |  |  | SE |
| MWH06-10546 |  | COLO-2 Cell-1 MER-UPS Battery Disconnect modifications rework | 4d | 2021-06-30 A | 2021-07-17 A | MWH06.D6.C2.C1180 | 100% |  | 2021-06-30 | 2021-07-06 |  |  | SE |
| MWH06-10547 |  | COLO-2 Cell-3 MER-UPS Battery Disconnect modifications rework | 4d | 2021-07-01 A | 2021-07-17 A | MWH06-10546 SS+1d, MWH06.D6.C2.C3180 | 100% |  | 2021-07-01 | 2021-07-07 |  |  | SE |
| MWH06-10548 |  | COLO-2 Cell-4 MER-UPS Battery Disconnect modifications rework | 4d | 2021-07-02 A | 2021-07-23 A | MWH06-10547 SS, MWH06-10545 SS+1d, MWH06.D6.C2.C4180 | 100% |  | 2021-07-02 | 2021-07-08 |  |  | SE |
|  | 3 | **COLO-3** |  | 2021-07-28 | 2021-08-19 |  |  |  |  |  |  |  |  |
| MWH06-10549 |  | COLO-3 Cell-1 MER-UPS Battery Disconnect modifications rework | 4d | 2021-07-28 A | 2021-08-04 A | MWH06.D6.C3.C1140 | 100% |  | 2021-07-31 | 2021-08-04 |  |  | SE |
| MWH06-10550 |  | COLO-3 Cell-2 MER-UPS Battery Disconnect modifications rework | 4d | 2021-08-05 A | 2021-08-09 A | MWH06-10549, MWH06.D6.C3.C2180 | 100% |  | 2021-08-31 | 2021-09-03 |  |  | SE |
| MWH06-10551 |  | COLO-3 Cell-3 MER-UPS Battery Disconnect modifications rework | 4d | 2021-08-10 A | 2021-08-13 A | MWH06-10550 | 100% |  | 2021-09-07 | 2021-09-10 |  |  | SE |
| MWH06-10552 |  | COLO-3 Cell-4 MER-UPS Battery Disconnect modifications rework | 4d | 2021-08-16 A | 2021-08-19 A | MWH06-10551 | 100% |  | 2021-09-11 | 2021-09-15 |  |  | SE |
|  | 4 | **COLO-4** |  | 2021-08-20 | 2021-09-09 |  |  |  |  |  |  |  |  |
| MWH06-10553 |  | COLO-4 Cell-1 MER-UPS Battery Disconnect modifications rework | 4d | 2021-08-20 A | 2021-08-24 A | MWH06-10552 | 100% |  | 2021-09-16 | 2021-09-20 |  |  | SE |
| MWH06-10554 |  | COLO-4 Cell-2 MER-UPS Battery Disconnect modifications rework | 4d | 2021-08-25 A | 2021-08-28 A | MWH06-10553 | 100% |  | 2021-09-21 | 2021-09-24 |  |  | SE |
| MWH06-10555 |  | COLO-4 Cell-3 MER-UPS Battery Disconnect modifications rework | 4d | 2021-08-30 A | 2021-09-02 | MWH06-10554 | 25% | 3d | 2021-09-27 | 2021-09-30 | 5d | 0d | SE |
| MWH06-10556 |  | COLO-4 Cell-4 MER-UPS Battery Disconnect modifications rework | 4d | 2021-09-03 | 2021-09-09 | MWH06-10555 |  |  |  |  | 5d | 27d | SE |

| ID | WBS | Activity | Duration | Start | Finish | Predecessors | Complete | Planned start | Planned finish | SE activities | COLO | CELL |
| --- | --- | --- | --- | --- | --- | --- | --- | --- | --- | --- | --- | --- |
|  | 36 | **Delay#36- NOPC-21 COLO-3 & 4 MER Cable Bus Access Space Constraint** |  | 2021-04-20 | 2021-08-12 |  |  |  |  |  |  |  |
|  | 1 | **COLO-3** |  | 2021-04-20 | 2021-08-12 |  |  |  |  |  |  |  |
| MWH06-10568 |  | COLO-3 Cell-1 Remove inaccessible tray in MER | 3d | 2021-04-20 A | 2021-04-23 A | MWH06-9939 | 100% | 2021-06-28 | 2021-06-30 | SE | 3 | 1 |
| MWH06-10570 |  | COLO-3 Cell-2 Remove inaccessible tray in MER | 3d | 2021-04-28 A | 2021-05-03 A | MWH06-9940 | 100% | 2021-06-30 | 2021-07-02 | SE | 3 | 2 |
| MWH06-10569 |  | COLO-3 CEll-1 Reinstall tray in MER | 3d | 2021-05-14 A | 2021-05-19 A | MWH06-10359 | 100% | 2021-06-28 | 2021-06-30 | SE | 3 | 1 |
| MWH06-10571 |  | COLO-3 Cell-2 Reinstall tray in MER | 3d | 2021-05-25 A | 2021-05-28 A | MWH06-10357 | 100% | 2021-06-30 | 2021-07-02 | SE | 3 | 2 |
| MWH06-10537 |  | COLO-3 Cell-3 Remove inaccessible tray in MER | 2d | 2021-06-01 A | 2021-06-04 A | MWH06-10312, MWH06-9941, MWH06.C3.C3080, MWH06.C3.C3230, MWH06.C3.C3260, MWH06.C3.C1380 | 100% | 2021-06-28 | 2021-06-29 | SE | 3 | 3 |
| MWH06-10557 |  | COLO-3 Cell-4 Remove inaccessible tray in MER | 2d | 2021-06-10 A | 2021-06-12 A | MWH06-9942, MWH06.C3.C4300, MWH06.C3.C2380 | 100% | 2021-06-30 | 2021-07-01 | SE | 3 | 4 |
| MWH06-10560 |  | COLO-4 Cell-1 Remove inaccessible tray in MER | 2d | 2021-06-10 A | 2021-06-12 A | MWH06-9943, MWH06.C4.C1290, MWH06-10572 | 100% | 2021-07-12 | 2021-07-13 | SE | 4 | 1 |
| MWH06-10558 |  | COLO-3 Cell-4 Reinstall tray in MER | 3d | 2021-06-23 A | 2021-06-26 A | MWH06.C3.C4320 | 100% | 2021-06-30 | 2021-07-02 | SE | 3 | 4 |
| MWH06-10538 |  | COLO-3 CEll-3 Reinstall tray in MER | 4d | 2021-06-25 A | 2021-06-30 A | MWH06.C3.C3280 | 100% | 2021-06-28 | 2021-07-01 | SE | 3 | 3 |
| MWH06-10564 |  | COLO-4 Cell-3 Remove inaccessible tray in MER | 2d | 2021-07-15 A | 2021-07-17 A | MWH06-9945, MWH06.C4.C3270, MWH06.C4.C1380, MWH06-10572 | 100% | 2021-07-31 | 2021-08-02 | SE | 4 | 3 |
| MWH06-10561 |  | COLO-4 Cell-1 Reinstall tray in MER | 3d | 2021-07-16 A | 2021-07-19 A | MWH06-10580, MWH06-10574, MWH06.C4.C1320, MWH06-10352, MWH06-10572 | 100% | 2021-08-03 | 2021-08-05 | SE | 4 | 1 |
| MWH06-10562 |  | COLO-4 Cell-2 Remove inaccessible tray in MER | 2d | 2021-07-16 A | 2021-07-20 A | MWH06-9944, MWH06.C4.C2300, MWH06-10356, MWH06-10572, MWH06.C3.C4370 | 100% | 2021-07-31 | 2021-08-02 | SE | 4 | 2 |
| MWH06-10565 |  | COLO-4 Cell-3 Reinstall tray in MER | 3d | 2021-07-23 A | 2021-07-27 A | MWH06.C4.C3320, MWH06-10353, MWH06-10572 | 100% | 2021-08-06 | 2021-08-09 | SE | 4 | 3 |
| MWH06-10566 |  | COLO-4 Cell-4 Remove inaccessible tray in MER4 | 2d | 2021-07-26 A | 2021-07-28 A | MWH06-9946, MWH06.C4.C4290, MWH06-10572, MWH06-10563 | 100% | 2021-08-04 | 2021-08-05 | SE | 4 | 4 |
| MWH06-10563 |  | COLO-4 Cell-2 Reinstall tray in MER | 3d | 2021-07-31 A | 2021-08-04 A | MWH06.C4.C2330, MWH06-10354, MWH06-10572 | 100% | 2021-08-31 | 2021-09-02 | SE | 4 | 2 |
| MWH06-10567 |  | COLO-4 Cell-4 Reinstall tray in MER | 3d | 2021-08-09 A | 2021-08-12 A | MWH06.C4.C4310, MWH06-10355, MWH06-10572 | 100% | 2021-09-03 | 2021-09-08 | SE | 4 | 4 |
|  | 2 | **COLO-4** |  |  |  |  |  |  |  |  |  |  |
|  | 37 | **Delay#37- NOPC-24 COLO-3 MER Raceway Constraints** |  | 2021-07-14 | 2021-07-29 |  |  |  |  |  |  |  |
| MWH06-10575 |  | COLO-3 Cell-3 Conduit rework | 13d | 2021-07-14 A | 2021-07-29 A | MWH06-9941 | 100% | 2021-07-31 | 2021-08-16 | SE | 3 | 3 |
|  | 38 | **Delay#38 NOPC-25 COLO-4 MER Raceway Constraints** |  | 2021-07-16 | 2021-08-18 |  |  |  |  |  |  |  |
| MWH06-10577 |  | COLO-4 Cell-2 Conduit rework | 13d | 2021-07-16 A | 2021-07-31 A | MWH06-10575 | 100% | 2021-07-31 | 2021-08-16 | SE | 4 | 2 |
| MWH06-10579 |  | COLO-4 Cell-4 Conduit rework | 13d | 2021-07-20 A | 2021-08-04 A | MWH06-10577 | 100% | 2021-07-31 | 2021-08-16 | SE | 4 | 4 |
| MWH06-10576 |  | COLO-4 Cell-1 Conduit rework | 13d | 2021-07-23 A | 2021-08-09 A | MWH06-10575 | 100% | 2021-07-31 | 2021-08-16 | SE | 4 | 1 |
| MWH06-10578 |  | COLO-4 Cell-3 Conduit rework | 13d | 2021-08-03 A | 2021-08-18 A | MWH06-10577 FS+2d | 100% | 2021-08-31 | 2021-09-16 | SE | 4 | 3 |

| ID | WBS | Activity | Duration | Start | Finish | Predecessors | Complete | Remaining | Planned start | Planned finish | Total float | Free float | Constraint | Expected finish | SE activities | COLO | CELL | WBS |
| --- | --- | --- | --- | --- | --- | --- | --- | --- | --- | --- | --- | --- | --- | --- | --- | --- | --- | --- |
|  | 39 | **Delay#39 NOPC-26 July Cx Constraints** |  | 2021-06-21 | 2021-09-03 |  |  |  |  |  |  |  |  |  |  |  |  |  |
|  | 1 | **Delay#39.1 Contractor A** |  | 2021-06-21 | 2021-09-03 |  |  |  |  |  |  |  |  |  |  |  |  |  |
|  | 1 | **COLO-1** |  | 2021-07-20 | 2021-09-03 |  |  |  |  |  |  |  |  |  |  |  |  |  |
| MWH06-10581 |  | 6.1-88 COLO-1 MER awaiting updated UPS L3 test script approval | 4d | 2021-07-20 A | 2021-08-31 A |  | 100% |  | 2021-07-14 | 2021-07-17 |  |  |  |  | SE |  |  |  |
| MWH06-10582 |  | 6.1-89 RFI574- COLO-1 Relocating MSB EPMS device to different cabinet | 4d | 2021-07-21 A | 2021-09-03 |  |  | 4d | 2021-07-14 | 2021-07-17 | -12d | 0d |  | 2021-09-03 | SE |  |  |  |
| MWH06-10583 |  | 6.1-92 COLO-1 SF/ RF startup delay (vendor schedule availability) | 4d | 2021-07-23 A | 2021-07-30 A |  | 100% |  | 2021-07-14 | 2021-07-17 |  |  |  |  | SE | 1 | 2 |  |
| MWH06-10584 |  | 6.1-93 COLO-1 HVAC minisplits startup delay (vendor schedule availability) | 4d | 2021-07-23 A | 2021-07-29 A |  | 100% |  | 2021-07-14 | 2021-07-17 |  |  |  |  | SE | 1 | 2 |  |
|  | 2 | **COLO-2** |  | 2021-06-21 | 2021-08-02 |  |  |  |  |  |  |  |  |  |  |  |  |  |
| MWH06-10588 |  | 6.2-08 COLO-2 Cell- 1,2 MER equipment Phenolic labelling | 27d | 2021-06-21 A | 2021-07-23 A |  | 100% |  | 2021-07-14 | 2021-08-16 |  |  |  |  | SE | 2 | 2 |  |
| MWH06-10589 |  | 6.2-08 COLO-2 Cell- 3,4 MER equipment Phenolic labelling | 27d | 2021-06-21 A | 2021-08-02 A |  | 100% |  | 2021-07-14 | 2021-08-16 |  |  |  |  | SE | 2 | 4 |  |
| MWH06-10590 |  | 6.2-12 COLO-2 All Cells- Factory connection Torque verification | 7d | 2021-07-26 A | 2021-08-02 A |  | 100% |  | 2021-07-14 | 2021-07-21 |  |  |  |  | SE | 2 | 4 |  |
|  | 3 | **Delay#39.2 Contractor F** |  | 2021-07-21 | 2021-08-30 |  |  |  |  |  |  |  |  |  |  |  |  |  |
| MWH06-10585 |  | 6.1-95 COLO-1 ATS's L3 startup delay (vendor schedule availability) | 12d | 2021-07-21 A | 2021-08-30 A |  | 100% |  | 2021-07-14 | 2021-07-28 |  |  |  |  |  | 1 | Cx-3 | 7 |
|  | 4 | **Delay#39.3 Contractor A1** |  | 2021-07-26 | 2021-08-02 |  |  |  |  |  |  |  |  |  |  |  |  |  |
| MWH06-10587 |  | 6.1-96 COLO-1 PDU - EPMS L3 startup delay (vendor schedule availability) | 4d | 2021-07-26 A | 2021-08-02 A |  | 100% |  | 2021-07-31 | 2021-08-04 |  |  |  |  |  | 1 | 2 |  |
|  | 40 | **Delay#40 Contractor G PNL01 Issues** |  | 2021-08-04 | 2021-08-17 |  |  |  |  |  |  |  |  |  |  |  |  |  |
|  | 1 | **Delay#39.1 Contractor A** |  | 2021-08-04 | 2021-08-17 |  |  |  |  |  |  |  |  |  |  |  |  |  |
|  | 1 | **COLO-1** |  |  |  |  |  |  |  |  |  |  |  |  |  |  |  |  |
|  | 2 | **COLO-2** |  | 2021-08-04 | 2021-08-17 |  |  |  |  |  |  |  |  |  |  |  |  |  |
| MWH06-10603 |  | COLO-2 Cell-1 UPS PNL01 Compass issues Preventing CYT | 10d | 2021-08-04 A | 2021-08-17 A |  | 100% |  | 2021-08-31 | 2021-09-13 |  |  | start on or after 2021-08-04 |  | SE |  |  |  |
| MWH06-10604 |  | COLO-2 Cell-2 UPS PNL01 Compass issues Preventing CYT | 10d | 2021-08-04 A | 2021-08-17 A |  | 100% |  | 2021-08-31 | 2021-09-13 |  |  | start on or after 2021-08-04 |  | SE |  |  |  |
| MWH06-10605 |  | COLO-2 Cell-3 UPS PNL01 Compass issues Preventing CYT | 10d | 2021-08-04 A | 2021-08-17 A |  | 100% |  | 2021-08-31 | 2021-09-13 |  |  | start on or after 2021-08-04 |  | SE |  |  |  |
| MWH06-10606 |  | COLO-2 Cell-4 UPS PNL01 Compass issues Preventing CYT | 10d | 2021-08-04 A | 2021-08-17 A |  | 100% |  | 2021-08-31 | 2021-09-13 |  |  | start on or after 2021-08-04 |  | SE |  |  |  |
|  | 3 | **Delay#39.2 Contractor F** |  |  |  |  |  |  |  |  |  |  |  |  |  |  |  |  |
|  | 4 | **Delay#39.3 Contractor A1** |  |  |  |  |  |  |  |  |  |  |  |  |  |  |  |  |
|  | 2 | **Delay #41 NOPC-27 Aug Cx Constraints** |  | 2021-08-03 | 2021-09-24 |  |  |  |  |  |  |  |  |  |  |  |  |  |
|  | 1 | **SE** |  | 2021-08-03 | 2021-09-24 |  |  |  |  |  |  |  |  |  |  |  |  |  |
|  | 1 | **COLO-1** |  | 2021-08-27 | 2021-09-24 |  |  |  |  |  |  |  |  |  |  |  |  |  |
| MWH06-10609 |  | 6.1-106 COLO-1 Cell-2 UPS01 Power module failure | 10d | 2021-08-27 A | 2021-09-01 | MWH06-10194 | 80% | 2d | 2021-08-31 | 2021-09-13 | -33d | 0d |  |  | SE | 1 | 4 |  |
| MWH06-10607 |  | 6.1-98 Admin/COLO-1 ASCO EPMS Connectivity Issues | 8d | 2021-08-30 A | 2021-09-09 | MWH06-10585, MWH06-10030, MWH06-10039, MWH06-10041, MWH06-10043 | 12% | 7d | 2021-08-31 | 2021-09-10 | -23d | 0d |  |  | SE | 1 | Cx-3 | 7 |
| MWH06-10608 |  | 6.1-88 Admin/ COLO-1 MER/ADMIN UPS L3 Testing (includes shutdown to move PQM's & PQM data post proccessing) | 10d | 2021-08-31 A | 2021-09-24 | MWH06.C1.Cx3030 SS, MWH06-10609 |  | 18d | 2021-08-31 | 2021-09-13 | -33d | 0d |  |  | SE | 1 | 4 |  |

| ID | WBS | Activity | Type | Duration | Start | Finish | Predecessors | Complete | Remaining | Planned start | Planned finish | Total float | Free float | Constraint | Resources | SE activities | COLO | CELL | WBS | MSP Activity ID | HRA - Safety Level | MSFT-Funding Releases | HRA - Required Permit- Priority-1 | HRA - Required Permit- Priority-2 | CRITICAL PATH-3 | Critical Path | TRADE | VECA % Complete |
| --- | --- | --- | --- | --- | --- | --- | --- | --- | --- | --- | --- | --- | --- | --- | --- | --- | --- | --- | --- | --- | --- | --- | --- | --- | --- | --- | --- | --- |
|  | 2 | **COLO-2** |  |  | 2021-08-03 | 2021-09-01 |  |  |  |  |  |  |  |  |  |  |  |  |  |  |  |  |  |  |  |  |  |  |
| MWH06-10610 |  | COLO-2 Cell-1 Open Issues preventing Yellow tags MER Equipment |  | 23d | 2021-08-03 A | 2021-08-30 A | MWH06-10197 | 100% |  | 2021-08-31 | 2021-09-29 |  |  |  |  | SE | 2 | 1 | 6 |  |  |  |  |  |  |  |  |  |
| MWH06-10612 |  | COLO-2 Cell-3 Open Issues preventing Yellow tags MER Equipment |  | 25d | 2021-08-03 A | 2021-09-01 | MWH06-10200 | 92% | 2d | 2021-08-31 | 2021-10-01 | -47d | 0d |  |  | SE | 2 | 3 | 6 |  |  |  |  |  |  |  |  |  |
| MWH06-10613 |  | COLO-2 Cell-4 Open Issues preventing Yellow tags MER Equipment |  | 25d | 2021-08-03 A | 2021-09-01 | MWH06-10206 | 92% | 2d | 2021-08-31 | 2021-10-01 | -47d | 0d |  |  | SE | 2 | 4 | 6 |  |  |  |  |  |  |  |  |  |
|  | 3 | **COLO-3** |  |  | 2021-08-06 | 2021-08-31 |  |  |  |  |  |  |  |  |  |  |  |  |  |  |  |  |  |  |  |  |  |  |
| MWH06-10614 |  | COLO-3 Delay in SE uploading QC Checkilst |  | 4d | 2021-08-06 A | 2021-08-31 |  | 100% | 0d | 2021-08-31 | 2021-09-03 | -31d | 0d |  |  | SE |  |  |  |  |  |  |  |  |  |  |  |  |
|  | 5 | **Construction** |  |  | 2020-04-06 | 2022-04-13 |  |  |  |  |  |  |  |  |  |  |  |  |  |  |  |  |  |  |  |  |  |  |
| MWH06-10611 |  | COLO-2 Cell-2 Open Issues preventing Yellow tags MER Equipment |  | 25d | 2021-08-03 A | 2021-09-01 | MWH06-10203 | 92% | 2d | 2021-08-31 | 2021-10-01 | -47d | 0d |  |  | SE | 2 | 2 | 6 |  |  |  |  |  |  |  |  |  |
|  | 1 | **Site** |  |  | 2020-04-06 | 2021-09-28 |  |  |  |  |  |  |  |  |  |  |  |  |  |  |  |  |  |  |  |  |  |  |
|  | 2 | **Contractor Setup** |  |  | 2020-04-06 | 2020-05-02 |  |  |  |  |  |  |  |  |  |  |  |  |  |  |  |  |  |  |  |  |  |  |
| MWH06.S.1000 |  | Mobilization |  | 20d | 2020-04-06 A | 2020-05-02 A | MWH06-2002 | 100% |  | 2020-04-27 | 2020-05-20 |  |  |  |  |  | S | All | A | 59 | 1 | 1B | 4 | 8 |  |  |  |  |
|  | 1 | **Early Utilities** |  |  | 2020-04-24 | 2020-05-23 |  |  |  |  |  |  |  |  |  |  |  |  |  |  |  |  |  |  |  |  |  |  |
| MWH06.S.1010 |  | Establish Access Roads / Laydown / Craft Parking / Temp Utilities |  | 30d | 2020-04-24 A | 2020-05-23 A | MWH-06-04-MOB-S, MWH-06-03-MOB-S, MWH-06-01-MOB-S, MWH-06-04-EW-F, MWH-06-03-EW-F, MWH-06-02-EW-F, MWH-06-01-EW-F, MWH-06-01-PAD-F, MWH-06-02-MOB-S SS+15d, MWH06.S.1000 SS+15d | 100% |  | 2020-05-14 | 2020-06-19 |  |  |  |  |  | S | All | A | 69 | 1 | 1B | 8 | 4 | CP-1 |  |  |  |
|  | 10 | **Wet Utilties** |  |  | 2020-05-05 | 2020-11-24 |  |  |  |  |  |  |  |  |  |  |  |  |  |  |  |  |  |  |  |  |  |  |
| MWH06.S.1030 |  | Site Sanitary |  | 60d | 2020-05-05 A | 2020-08-10 A | MWH06-1997 | 100% |  | 2020-05-11 | 2020-07-24 |  |  |  | Advantage [3000 h] |  | S | All | A | 686 | 3 | 1B | 1 | 8 |  | 4 | 1 |  |
| MWH06.S.1040 |  | IWW System |  | 60d | 2020-05-18 A | 2020-08-10 A | MWH06-1997 | 100% |  | 2020-05-26 | 2020-08-08 |  |  |  |  |  | S | All | A | 688 | 3 | 1B | 1 | 8 |  | 4 |  |  |
| MWH06.S.1130 |  | Site Storm |  | 80d | 2020-06-15 A | 2020-08-24 A | MWH06.S.1040 SS+10d | 100% |  | 2020-06-29 | 2020-10-07 |  |  |  | Advantage [4000 h] |  | S | All | A | 687 | 3 | 1B | 1 | 8 | CP-1 | 4 | 1 |  |
| MWH06.S.1120 |  | Site Water / Fire Loop |  | 60d | 2020-06-22 A | 2020-11-24 A | MWH06-1997, MWH06.S.1030 SS+30d, MWH06.S.1130 SS+20d, MWH06.S.1031, MWH06-9716, MWH06-9717, MWH06-9718, MWH06-9719, MWH06-9720, MWH06-9721, MWH06-9722 | 100% |  | 2020-07-24 | 2020-10-07 |  |  |  | Advantage [3000 h] |  | S | All | A | 685 | 3 | 1B | 1 | 8 |  | 4 | 1 |  |
| MWH06.S.1031 |  | Remaining Site Sanitary |  | 60d | 2020-08-11 A | 2020-09-11 A | MWH06-1997, MWH06.S.1030 | 100% |  | 2020-05-11 | 2020-07-24 |  |  |  | Advantage [3000 h] |  | S | All | A | 686 | 2 | 1B | 1 | 7 |  | 4 | 1 |  |
| MWH06.S.1041 |  | Remaining IWW System |  | 60d | 2020-08-11 A | 2020-09-11 A | MWH06.S.1040 | 100% |  | 2020-05-26 | 2020-08-08 |  |  |  |  |  | S | All | A | 688 | 2 | 1B | 1 | 7 |  | 4 |  |  |
|  | 9 | **Dry Utilities** |  |  | 2020-06-25 | 2021-03-19 |  |  |  |  |  |  |  |  |  |  |  |  |  |  |  |  |  |  |  |  |  |  |
| MWH06.S.1160 |  | Telecom-Communications Site Loop/Ductbank |  | 75d | 2020-06-25 A | 2020-09-08 A | MWH06-1994 | 100% |  | 2020-06-29 | 2020-10-01 |  |  |  | VECA Electric [2500 h] |  | S | All | A | 690 | 2 | 1B | 1 | 7 |  |  | 4 | 100 |
| MWH06.S.1830 |  | Telecom-RNG Fiber CNR buildout |  | 50d | 2020-10-05 A | 2020-11-25 A | MWH06.S.1160, MWH06-9914 | 100% |  | 2020-10-05 | 2020-12-08 |  |  |  | LINX [5000 h] |  | S | All | A | 692 | 1 | 1B | 1 | 4 |  |  | 7 |  |
| MWH06-9904 |  | Linx Mobilization to Admin/COLO-1 | milestone | 0d | 2021-01-25 A | 2021-01-25 A | MWH.06.M1000 | 100% |  | 2021-02-01 | 2021-02-01 |  |  | start on or after 2021-01-25 |  |  |  |  |  |  |  |  |  |  |  |  |  |  |
| MWH06.S.1540 |  | Telecom-RNG Fiber Underground installation |  | 50d | 2021-01-26 A | 2021-03-19 A | MWH06-9888, MWH06-9732, MWH06.S.1160, MWH06-9889 | 100% |  | 2021-02-01 | 2021-04-02 |  |  |  | LINX [5000 h] |  | S | All | A | 691 | 2 | 1B | 1 | 4 |  |  | 7 |  |

| ID | WBS | Activity | Duration | Start | Finish | Predecessors | Complete | Planned start | Planned finish | Constraint | Resources | MSP Activity ID | VECA % Complete | HRA - Safety Level | MV CREW | COLO | TRADE | CELL | HRA - Required Permit- Priority-1 | HRA - Required Permit- Priority-2 | HOT ITEMS | Critical Path-2 |
| --- | --- | --- | --- | --- | --- | --- | --- | --- | --- | --- | --- | --- | --- | --- | --- | --- | --- | --- | --- | --- | --- | --- |
|  | 3 | **Eletrical Utilities** |  | 2020-08-06 | 2021-04-16 |  |  |  |  |  |  |  |  |  |  |  |  |  |  |  |  |  |
|  | 1 | **Vaults and Duct Banks** |  | 2020-08-06 | 2020-11-20 |  |  |  |  |  |  |  |  |  |  |  |  |  |  |  |  |  |
|  | 1 | **Vaults** |  | 2020-08-17 | 2020-11-07 |  |  |  |  |  |  |  |  |  |  |  |  |  |  |  |  |  |
|  | 1 | **East** |  | 2020-08-24 | 2020-11-07 |  |  |  |  |  |  |  |  |  |  |  |  |  |  |  |  |  |
| MWH06.S.1060 |  | Vault- set 1st Vault Along UMS Duct bank run | 3d | 2020-08-24 A | 2020-08-26 A | MWH-06-04-EW-F, MWH-06-03-EW-F, MWH-06-02-EW-F, MWH-06-01-EW-F, MWH-06-01-PAD-F, MWH06.C2.CS1060 | 100% | 2020-09-03 | 2020-09-05 |  | VECA Electric [180 h] | 698 | 100 | 2 | 1 | S | 4 | All | 5 | 7 |  |  |
| MWH06.S.1070 |  | Vault- Set 2nd vault Along UMS Duct Run near COLO-2 | 3d | 2020-08-24 A | 2020-08-26 A | MWH06.S.1060 SS | 100% | 2020-09-08 | 2020-09-10 |  | VECA Electric [180 h] | 699 | 100 | 2 | 1 | S | 4 | All | 5 | 7 |  |  |
| MWH06-9738 |  | Temp Power/ Telecom duct bank | 4d | 2020-08-27 A | 2020-09-22 A | MWH06-9716, MWH06-9717, MWH06-9718, MWH06-9719, MWH06-9720, MWH06-9721, MWH06-9722 | 100% | 2020-09-28 | 2020-10-01 |  |  |  |  | 2 |  |  |  |  | 1 | 4 |  |  |
| MWH06.S.1250 |  | Set URS Vault | 8d | 2020-10-30 A | 2020-11-06 A | MWH06-2004 | 100% | 2020-11-16 | 2020-11-25 |  | VECA Electric [480 h] | 507 | 100 | 3 | 1 | S | 4 | All | 5 | 4 |  |  |
| MWH06.S.1370 |  | Set UMS vault | 7d | 2020-10-30 A | 2020-11-07 A | MWH06.S.1250, MWH06-2133, MWH06.S.1170, MWH06-2190 | 100% | 2020-11-25 | 2020-12-08 |  | VECA Electric [480 h] | 505 | 100 | 3 | 1 | S | 4 | All | 5 | 4 | 2 | 1 |
| MWH06.S.1150 |  | Vault- Set vault along URS to JAZ run | 3d | 2020-11-02 A | 2020-11-04 A | MWH06.S.1070, MWH06-2190 | 100% | 2020-11-16 | 2020-11-18 |  | VECA Electric [180 h] | 700 | 100 | 2 | 1 | S | 4 | All | 5 | 4 |  |  |
| MWH06.S.1170 |  | Vault- Set vault along UMS to JAZ run | 3d | 2020-11-05 A | 2020-11-07 A | MWH06.S.1150, MWH06-2190 | 100% | 2020-11-19 | 2020-11-21 |  | VECA Electric [180 h] | 697 | 100 | 2 | 1 | S | 4 | All | 5 | 4 |  |  |
|  | 2 | **West** |  | 2020-08-17 | 2020-08-22 |  |  |  |  |  |  |  |  |  |  |  |  |  |  |  |  |  |
| MWH06.S.1190 |  | Vault- Set North vault- Along UPM to Vault | 3d | 2020-08-17 A | 2020-08-19 A | MWH06-2190 | 100% | 2020-10-09 | 2020-10-12 |  | VECA Electric [180 h] | 702 | 100 | 2 | 1 | S | 4 | All | 5 | 8 |  |  |
| MWH06.S.1340 |  | Vault - Set South Vault Along Vault to URS run | 3d | 2020-08-17 A | 2020-08-19 A | MWH06.S.1240 | 100% | 2020-11-07 | 2020-11-10 |  | VECA Electric [180 h] | 706 | 100 | 2 | 1 | S | 4 | All | 5 | 8 |  |  |
| MWH06.S.1240 |  | Vault - Set North Vault Along Vault to URS run | 3d | 2020-08-20 A | 2020-08-22 A | MWH06.S.1190 | 100% | 2020-10-23 | 2020-10-27 |  | VECA Electric [180 h] | 704 | 100 | 2 | 1 | S | 4 | All | 5 | 8 |  |  |
| MWH06.S.1580 |  | Vault - Set South Vault along UPM to Vault | 3d | 2020-08-20 A | 2020-08-22 A | MWH06.S.1340 | 100% | 2020-11-23 | 2020-11-25 |  | VECA Electric [180 h] | 708 | 100 | 2 | 1 | S | 4 | All | 5 | 8 |  |  |
|  | 2 | **Duct Banks** |  | 2020-08-06 | 2020-11-20 |  |  |  |  |  |  |  |  |  |  |  |  |  |  |  |  |  |
|  | 1 | **East** |  | 2020-09-21 | 2020-11-20 |  |  |  |  |  |  |  |  |  |  |  |  |  |  |  |  |  |
| MWH06.S.1180 |  | Duct Bank- Building to URS(upto horse shoe) - 2nd Half | 7d | 2020-09-21 A | 2020-10-06 A | MWH06.S.1140 FF, MWH06-9716, MWH06-9717, MWH06-9718, MWH06-9719, MWH06-9720, MWH06-9721, MWH06-9722 | 100% | 2020-09-30 | 2020-10-08 |  | VECA Electric [420 h] | 714 | 100 | 3 | 1 | S | 4 | All | 1 | 4 |  |  |
| MWH06.S.1140 |  | Duct Bank- Building to URS - 1st Half | 7d | 2020-09-26 A | 2020-10-06 A | MWH06.S.1580 | 100% | 2020-09-26 | 2020-10-05 |  | VECA Electric [420 h] | 713 | 100 | 3 | 1 | S | 4 | All | 1 | 4 |  |  |
| MWH06.S.1080 |  | Duct bank- COLO-1 UPM to north vault | 2d | 2020-10-02 A | 2020-10-05 A | MWH06.S.1060, MWH06-9738, MWH06-9716, MWH06-9717, MWH06-9718, MWH06-9719, MWH06-9720, MWH06-9721, MWH06-9722 | 100% | 2020-10-19 | 2020-10-20 | start on or after 2020-10-02 | VECA Electric [360 h] | 711 | 100 | 3 | 1 | S | 4 | All | 1 | 4 |  |  |
| MWH06.S.1090 |  | Duct bank- COLO-2 UPM to north Valut | 4d | 2020-10-05 A | 2020-10-07 A | MWH06.S.1080 SS | 100% | 2020-10-19 | 2020-10-22 |  | VECA Electric [240 h] | 712 | 100 | 3 | 1 | S | 4 | All | 1 | 4 |  |  |
| MWH06.S.1230 |  | Duct Bank - Vault to Vault along UMS duct Run - horseshoe | 12d | 2020-10-12 A | 2020-10-17 A | MWH06.S.1090, MWH06.S.1070, MWH06.S.1140, MWH06.S.1180, MWH06-9914 | 100% | 2020-10-26 | 2020-11-07 |  | VECA Electric [720 h] | 716 | 100 | 3 | 1 | S | 4 | All | 1 | 4 |  |  |
| MWH06.S.1270 |  | Duct Bank - COLO-3 UPM to Vault UMS Run | 4d | 2020-10-16 A | 2020-10-21 A | MWH06.S.1230 | 100% | 2020-10-19 | 2020-10-22 |  | VECA Electric [240 h] | 717 | 100 | 3 | 1 | S | 4 | All | 1 | 4 |  |  |
| MWH06.S.1410 |  | Duct Bank - Vault To JAZ - URS to JAZ run | 7d | 2020-10-26 A | 2020-11-04 A | MWH06.S.1580 | 100% | 2020-11-02 | 2020-11-09 |  | VECA Electric [420 h] | 719 | 100 | 3 | 1 | S | 4 | All | 1 | 4 |  |  |
| MWH06.S.1210 |  | Duct Bank - JAZ to vault- UMS to JAZ run | 7d | 2020-10-29 A | 2020-11-04 A | MWH06.S.1170, MWH06.S.1180, MWH06-2131, MWH06.S.1150 | 100% | 2020-11-16 | 2020-11-23 |  | VECA Electric [420 h] | 720 | 100 | 3 | 1 | S | 4 | All | 1 | 4 |  |  |
| MWH06.S.1320 |  | Duct Bank - URS to vault - URS to JAZ run | 7d | 2020-11-02 A | 2020-11-09 A | MWH06.S.1270, MWH06.S.1230, MWH06.S.1270 SS | 100% | 2020-11-16 | 2020-11-23 |  | VECA Electric [420 h] | 718 | 100 | 3 | 1 | S | 4 | All | 1 | 4 |  |  |
| MWH06.S.1590 |  | Duct Bank - COLO-4 UPM to UMS | 4d | 2020-11-09 A | 2020-11-14 A | MWH06.S.1470, MWH06.S.1550 | 100% | 2020-11-23 | 2020-11-30 |  | VECA Electric [240 h] | 723 | 100 | 3 | 1 | S | 4 | All | 1 | 4 |  |  |
| MWH06.S.1550 |  | Duct Bank - south vault (along UMS duct run) to UMS | 10d | 2020-11-12 A | 2020-11-20 A | MWH06.S.1470, MWH06.S.1410 | 100% | 2020-11-21 | 2020-12-07 |  | VECA Electric [600 h] | 722 | 100 | 3 | 1 | S | 4 | All | 1 | 4 |  |  |
| MWH06.S.1470 |  | Duct Bank - Vault to UMS- UMS to JAZ run | 7d | 2020-11-13 A | 2020-11-20 A | MWH06.S.1320, MWH06.S.1210, MWH06.S.1410, MWH06-2133, MWH06.S.1170, MWH06.S.1370 | 100% | 2020-11-16 | 2020-11-23 |  | VECA Electric [420 h] | 721 | 100 | 3 | 1 | S | 4 | All | 1 | 4 |  |  |

Notes:
- MWH06.S.1250: VECA Update Notes: Vault was held in submittals to align gear to the lid and held production of the vault up, we completed and turned over to CSI by 11/14/20 for them to start preping pad.
- MWH06.S.1370: VECA Update Notes: 1 day savings on the vault, this was an 8 day duration per original pull plan for this area
- MWH06.S.1150: VECA Update Notes: Dates shifted to coordinate work around the URS and UMS vault installation
- MWH06.S.1170: VECA Update Notes: Dates shifted to coordinate work around the URS and UMS vault installation
- MWH06.S.1410: VECA Update Notes: Ductbank suspend and resume to coordinate with GCPUD activities as well as 06 site logisitic, also has to complete after URS vault was set. Vault was delayed in submittal process to align gear with lid of the vault
- MWH06.S.1210: VECA Update Notes: Ductbank suspend and resume to coordinate with GCPUD activities as well as 06 site logisitic, also has to complete after URS vault was set. Vault was delayed in submittal process to align gear with lid of the vault
- MWH06.S.1320: VECA Update Notes: Ductbank suspend and resume to coordinate with GCPUD activities as well as 06 site logisitic, also has to complete after URS vault was set. Vault was delayed in submittal process to align gear with lid of the vault
- MWH06.S.1470: VECA Update Notes: Suspend and resume to coord w/GCPUD, also a (2) day delay due to weather

| ID | WBS | Activity | Duration | Start | Finish | Predecessors | Complete | Planned start | Planned finish | Resources | MSP Activity ID | VECA % Complete | HRA - Safety Level | MV CREW | COLO | TRADE | CELL | HRA - Required Permit- Priority-1 | HRA - Required Permit- Priority-2 | HOT ITEMS | WBS | Critical Path-2 | Notes |
| --- | --- | --- | --- | --- | --- | --- | --- | --- | --- | --- | --- | --- | --- | --- | --- | --- | --- | --- | --- | --- | --- | --- | --- |
|  | 4 | **Building** |  | 2020-08-06 | 2020-10-15 |  |  |  |  |  |  |  |  |  |  |  |  |  |  |  |  |  |  |
| MWH06.S.1020 |  | Duct Bank - COLO1- UPM to UPM | 4d | 2020-08-06 A | 2020-08-22 A | MWH06-1997.1, MWH06.AD.CS1060, MWH06.C2.CS1030 | 100% | 2020-08-10 | 2020-08-13 | VECA Electric [240 h] | 725 | 100 | 3 | 1 | S | 4 | All | 1 | 4 |  |  |  |  |
| MWH06.S.1050 |  | Duct Bank - COLO2- UPM to UPM | 4d | 2020-08-24 A | 2020-08-29 A | MWH06.S.1020, MWH06.C3.CS1030, MWH06.C2.CS1050 | 100% | 2020-08-31 | 2020-09-03 | VECA Electric [240 h] | 727 | 100 | 3 | 1 | S | 4 | All | 1 | 4 |  |  |  |  |
| MWH06.S.1110 |  | Duct Bank - North Crossover (URS to west Vault Run) | 12d | 2020-09-02 A | 2020-10-09 A | MWH06.S.1050, MWH06.C3.CS1050, MWH06-9716, MWH06-9717, MWH06-9718, MWH06-9719, MWH06-9720, MWH06-9721, MWH06-9722 | 100% | 2020-09-14 | 2020-09-26 | VECA Electric [720 h] | 726 | 100 | 3 | 1 | S | 4 | All | 1 | 4 |  |  |  |  |
| MWH06.S.1200 |  | Duct Bank - South Cross over (URS to west Vault Run) | 12d | 2020-09-02 A | 2020-10-09 A | MWH06.S.1110 FF, MWH06.S.1110, MWH06-9716, MWH06-9717, MWH06-9718, MWH06-9719, MWH06-9720, MWH06-9721, MWH06-9722 | 100% | 2020-09-28 | 2020-10-12 | VECA Electric [720 h] | 728 | 100 | 3 | 1 | S | 4 | All | 1 | 4 |  |  |  |  |
| MWH06.S.1220 |  | Duct Bank - COLO-3 UPM to UPM | 4d | 2020-10-10 A | 2020-10-15 A | MWH06.S.1200, MWH06.C3.CS1050, MWH06.C4.CS1030, MWH06.C3.CS1070, MWH06-9914 | 100% | 2020-11-06 | 2020-11-10 | VECA Electric [240 h] | 729 | 100 | 3 | 1 | S | 4 | All | 1 | 4 |  |  |  |  |
| MWH06.S.1350 |  | Duct Bank - COLO-4 UPM to UPM | 4d | 2020-10-10 A | 2020-10-15 A | MWH06.S.1220, MWH06.C4.CS1030, MWH06.C4.CS1050, MWH06.C4.CS1070, MWH06-9914 | 100% | 2020-11-25 | 2020-12-02 | VECA Electric [240 h] | 731 | 100 | 3 | 1 | S | 4 | All | 1 | 4 |  |  |  |  |
|  | 5 | **West** |  | 2020-08-17 | 2020-10-15 |  |  |  |  |  |  |  |  |  |  |  |  |  |  |  |  |  |  |
| MWH06.S.1100 |  | Duct Bank Admin UPM to COLO-1 UPM | 4d | 2020-08-17 A | 2020-08-19 A | MWH06.AD.CS1080 | 100% | 2020-09-24 | 2020-09-28 | VECA Electric [240 h] | 734 | 100 | 2 | 1 | S | 4 | All | 1 | 4 |  |  |  |  |
| MWH06.S.1260 |  | Duct Back- Admin UPM to Vault | 6d | 2020-08-24 A | 2020-08-28 A | MWH06.S.1190, MWH06.S.1100 | 100% | 2020-10-23 | 2020-10-30 | VECA Electric [360 h] | 733 | 100 | 2 | 1 | S | 4 | All | 1 | 4 |  |  |  |  |
| MWH06.S.1280 |  | Duct Bank COLO-2 UPM to Vault | 4d | 2020-09-28 A | 2020-10-01 A | MWH06.S.1240, MWH06.S.1260 | 100% | 2020-10-19 | 2020-10-22 | VECA Electric [240 h] | 736 | 100 | 2 | 1 | S | 4 | All | 1 | 4 |  |  |  |  |
| MWH06.S.1390 |  | Duct Bank - Building to North Vault URS run | 7d | 2020-10-02 A | 2020-10-10 A | MWH06.S.1240, MWH06.S.1280 | 100% | 2020-10-23 | 2020-10-31 | VECA Electric [420 h] | 737 | 100 | 3 | 1 | S | 4 | All | 1 | 4 |  |  |  |  |
| MWH06.S.1460 |  | Duct Bank - Builing to South Vault- URS Run | 7d | 2020-10-02 A | 2020-10-10 A | MWH06.S.1390 | 100% | 2020-11-02 | 2020-11-09 | VECA Electric [420 h] | 738 | 100 | 3 | 1 | S | 4 | All | 1 | 4 |  |  |  |  |
| MWH06.S.1620 |  | Duct Bank - Vault to COLO-3 UPM | 4d | 2020-10-12 A | 2020-10-15 A | MWH06.S.1580, MWH06.S.1460, MWH06-9914 | 100% | 2020-11-10 | 2020-11-13 | VECA Electric [240 h] | 739 | 100 | 2 | 1 | S | 4 | All | 1 | 4 |  |  |  |  |
| MWH06.S.1670 |  | Duct Bank - Vault to COLO-4 UPM | 6d | 2020-10-12 A | 2020-10-15 A | MWH06.S.1620, MWH06-9914 | 100% | 2020-11-16 | 2020-11-21 | VECA Electric [360 h] | 741 | 100 | 2 | 1 | S | 4 | All | 1 | 4 |  |  |  |  |
|  | 2 | **Pull wire** |  | 2020-11-16 | 2021-01-16 |  |  |  |  |  |  |  |  |  |  |  |  |  |  |  |  |  |  |
| MWH06.S.1310 |  | Set MV Gear (URS) | 4d | 2020-11-16 A | 2020-11-20 A | MWH06-2004, MWH06.S.1170, MWH06-2504, MWH06-2510, MWH06-1996 | 100% | 2020-11-23 | 2020-11-30 | VECA Electric [240 h] | 745 | 75.344343782570348 | 2 | 2-2 | S | 4 | All | 5 | 4 | 1 | A |  |  |
| MWH06.S.1570 |  | Set MV Gear (UMS) | 4d | 2020-12-11 A | 2020-12-16 A | MWH06.S.1370, MWH06-2503, MWH06-2509, MWH06-1996, MWH06-9903 | 100% | 2020-12-21 | 2020-12-28 | VECA Electric [240 h] | 744 | 20.000000000000004 | 2 | 2-2 | S | 4 | All | 5 | 4 | 2 | A | 1 |  |
|  | 5 | **East Short Runs** |  | 2020-12-28 | 2021-01-13 |  |  |  |  |  |  |  |  |  |  |  |  |  |  |  |  |  |  |
| MWH06.S.1380 |  | Pull UPM to UPM COLO-1 - CELL-1 to Cell-3 | 2d | 2020-12-28 A | 2020-12-31 A | MWH06.S.1330, MWH06.C1.C3040, MWH06.C1.C1040, MWH06-1996, MWH06-9915 | 100% | 2021-01-05 | 2021-01-06 | VECA Electric [120 h] | 761 | 0 | 2 | 2-1 | S | 4 | All | 7 | 4 |  |  |  | 8.10- Priority-1 |
| MWH06.S.1400 |  | Pul UPM to UPM COLO-2- CELL-1 to Cell-3 | 2d | 2021-01-02 A | 2021-01-04 A | MWH06.S.1380, MWH06.C2.C3040, MWH06.C2.C1030, MWH06-1996 | 100% | 2021-01-11 | 2021-01-12 | VECA Electric [120 h] | 751 | 0 | 2 | 2-2 | S | 4 | All | 7 | 4 |  |  |  |  |
| MWH06.S.1720 |  | Pull UPM to UPM COLO-4 - CELL-1 to Cell-3 | 2d | 2021-01-08 A | 2021-01-08 A | MWH06.S.1510, MWH06.C4.C3040, MWH06.C4.C1040, MWH06-1996 | 100% | 2021-02-03 | 2021-02-04 | VECA Electric [120 h] | 760 | 0 | 2 | 2-2 | S | 4 | All | 7 | 4 |  |  |  |  |
| MWH06.S.1510 |  | Pull UPM to UPM COLO-3 - CELL-1 to Cell-3 | 2d | 2021-01-09 A | 2021-01-13 A | MWH06.S.1400, MWH06.C3.C3040, MWH06.C3.C1040, MWH06-1996 | 100% | 2021-01-15 | 2021-01-18 | VECA Electric [120 h] | 753 | 0 | 2 | 2-2 | S | 4 | All | 7 | 4 |  |  |  |  |
|  | 6 | **West Short Runs** |  | 2020-12-28 | 2021-01-16 |  |  |  |  |  |  |  |  |  |  |  |  |  |  |  |  |  |  |
| MWH06.S.1330 |  | Pull UPM to UPM Admin to COLO-1 Cell -2 | 2d | 2020-12-28 A | 2020-12-31 A | MWH06-2686, MWH06-2621, MWH06.C1.C2040, MWH06-1963 SS+3d, MWH06.S.1100, MWH06-1996, MWH06-9915 | 100% | 2021-01-02 | 2021-01-04 | VECA Electric [120 h] | 768 | 0 | 2 | 2-1 | S | 4 | All | 7 | 4 |  |  |  | 8.10- Priority-1 |
| MWH06.S.1360 |  | Pull UPM to UPM COLO-1 Cell 2- Cell - 4 | 2d | 2020-12-28 A | 2020-12-31 A | MWH06.S.1380, MWH06.S.1330, MWH06.C1.C2040, MWH06.C1.C4040, MWH06.S.1020, MWH06-1996, MWH06-9915 | 100% | 2021-01-07 | 2021-01-08 | VECA Electric [120 h] | 762 | 0 | 2 | 2-1 | S | 4 | All | 7 | 4 |  |  |  | 8.10- Priority-1 |
| MWH06.S.1560 |  | Pull UPM to UPM COLO-3 Cell 2- Cell - 4 | 2d | 2021-01-13 A | 2021-01-14 A | MWH06.S.1420, MWH06.S.1440, MWH06.S.1220, MWH06.C3.C2040, MWH06.C3.C4040, MWH06-1996 | 100% | 2021-02-05 | 2021-02-08 | VECA Electric [120 h] | 772 | 0 | 2 | 2-3 | S | 4 | All | 7 | 4 |  |  |  |  |
| MWH06.S.1440 |  | Pull UPM to UPM COLO-2 Cell 2- Cell - 4 | 2d | 2021-01-14 A | 2021-01-15 A | MWH06.S.1510, MWH06.S.1290, MWH06.S.1360, MWH06.C2.C4030, MWH06.C2.C2020, MWH06.S.1050, MWH06-1996 | 100% | 2021-02-03 | 2021-02-04 | VECA Electric [120 h] | 771 | 0 | 2 | 2-3 | S | 4 | All | 7 | 4 |  |  |  | 8.10 - tied to crew 2 to level resource |
| MWH06.S.1750 |  | Pull UPM to UPM COLO-4 Cell 2- Cell - 4 | 2d | 2021-01-15 A | 2021-01-16 A | MWH06.S.1520, MWH06.S.1560, MWH06.S.1350, MWH06.C4.C2040, MWH06.C4.C4040, MWH06-1996 | 100% | 2021-02-11 | 2021-02-12 | VECA Electric [120 h] | 774 | 0 | 2 | 2-3 | S | 4 | All | 7 | 4 |  |  |  | 8.10 - tied to crew 2 to level resource |

Notes:
- MWH06.S.1310: VECA Update Notes: In progress started 11/21 in earnest due late pad pour, Discovered main bussing insulation has a factory defect, issue noted and logged in compass as well as email delaying third party testing
- MWH06.S.1570: VECA Update Notes: No equipment (OFCI) expected onsite 11/30, Now expected 12/7, Now expected 12/11. Equipment arrived *late* on 12/11 with moisture inside the enclosure. We deployed heat to mitigate the issue equipment was tarped on the truck, the driver did pass through s
- MWH06.S.1380: VECA Update Notes: MV cable pulling crew redirected to URS/UMS pulls and still pulling at colo 1 due to late arrival of UPMs
- MWH06.S.1400: VECA Update Notes: MV cable pulling crew redirected to URS/UMS pulls and still pulling at colo 1 due to late arrival of UPMs
- MWH06.S.1510: VECA Update Notes: UPMs OFCI not onsite yet
- MWH06.S.1330: VECA Update Notes: UPMs OFCI not onsite yet Crew redirected to another pulling area (UMS to JAZ) to avoid schedule conflict with fluid cooler setting at 1.2 and 1.4
- MWH06.S.1360: VECA Update Notes: MV cable pulling crew redirected to URS/UMS pulls and still pulling at colo 1 due to late arrival of UPMs

| ID | WBS | Activity | Duration | Start | Finish | Predecessors | Complete | Planned start | Planned finish | Resources | MSP Activity ID | VECA % Complete | HRA - Safety Level | MV CREW | COLO | TRADE | CELL | HRA - Required Permit- Priority-1 | HRA - Required Permit- Priority-2 | Notes |
| --- | --- | --- | --- | --- | --- | --- | --- | --- | --- | --- | --- | --- | --- | --- | --- | --- | --- | --- | --- | --- |
|  | 4 | **Cross overs** |  | 2020-12-28 | 2021-01-16 |  |  |  |  |  |  |  |  |  |  |  |  |  |  |  |
| MWH06.S.1290 |  | Pull Cross Overs- COLO-1 CELL-3 to CELL-4 | 2d | 2020-12-28 A | 2020-12-31 A | MWH06.C1.C4040, MWH06.C1.C3040, MWH06.S.1020, MWH06-1996, MWH06-9915 | 100% | 2021-01-02 | 2021-01-04 | VECA Electric [120 h] | 746 | 0 | 2 | 2-3 | S | 4 | All | 7 | 4 |  |
| MWH06.S.1520 |  | Pull Cross Overs- COLO-3 CELL-3 to CELL-4 | 2d | 2021-01-12 A | 2021-01-13 A | MWH06.S.1560, MWH06.S.1220, MWH06.C3.C3040, MWH06.C3.C4040, MWH06-1996 | 100% | 2021-02-09 | 2021-02-10 | VECA Electric [120 h] | 752 | 0 | 2 | 2-3 | S | 4 | All | 7 | 4 |  |
| MWH06.S.1420 |  | Pull Cross Overs- COLO-2 CELL-3 to CELL-4 | 2d | 2021-01-14 A | 2021-01-15 A | MWH06.S.1440, MWH06.C2.C3040, MWH06.S.1220, MWH06.S.1050, MWH06.C2.C4030, MWH06-1996 | 100% | 2021-02-05 | 2021-02-08 | VECA Electric [120 h] | 748 | 0 | 2 | 2-3 | S | 4 | All | 7 | 4 |  |
| MWH06.S.1710 |  | Pull Cross Overs- COLO-4 CELL-3 to CELL-4 | 2d | 2021-01-16 A | 2021-01-16 A | MWH06.S.1750, MWH06.S.1350, MWH06.C4.C3040, MWH06.C4.C4040, MWH06-1996 | 100% | 2021-02-13 | 2021-02-15 | VECA Electric [120 h] | 756 | 0 | 2 | 2-3 | S | 4 | All | 7 | 4 |  |
|  | 1 | **URS to UPM** |  | 2020-12-01 | 2020-12-31 |  |  |  |  |  |  |  |  |  |  |  |  |  |  |  |
| MWH06.S.1480 |  | PULL- URS to Admin | 4d | 2020-12-01 A | 2020-12-05 A | MWH06-2686, MWH06-1963 SS+3d, MWH06.S.1390, MWH06.S.1110, MWH06.S.1260, MWH06.S.1100, MWH06.S.1310, MWH06-1996 | 100% | 2021-01-02 | 2021-01-06 | VECA Electric [240 h] | 775 | 100 | 2 | 2-1 | S | 4 | All | 7 | 4 | 8.17- Priority-1 |
| MWH06.S.1500 |  | PULL- URS to COLO-2 | 4d | 2020-12-21 A | 2020-12-23 A | MWH06.S.1480, MWH06.C2.C2020, MWH06.S.1390, MWH06.S.1280, MWH06.S.1110, MWH06-1996, MWH06.S.1310 | 100% | 2021-01-07 | 2021-01-11 | VECA Electric [240 h] | 776 | 0 | 2 | 2-3 | S | 4 | All | 7 | 4 | 8.17- Priority-1 |
| MWH06.S.1640 |  | PULL- URS to COLO-3 | 4d | 2020-12-28 A | 2020-12-31 A | MWH06.S.1500, MWH06.C3.C2040, MWH06.S.1200, MWH06.S.1620, MWH06.S.1460, MWH06-1996, MWH06.S.1310, MWH06-9915 | 100% | 2021-01-12 | 2021-01-15 | VECA Electric [240 h] | 777 | 0 | 2 | 2-3 | S | 4 | All | 7 | 4 | 8.17- Priority-1 |
| MWH06.S.1770 |  | PULL- URS to COLO-4 | 4d | 2020-12-28 A | 2020-12-31 A | MWH06.S.1310, MWH06.S.1640, MWH06.C4.C2040, MWH06.S.1140, MWH06.S.1180, MWH06.S.1460, MWH06.S.1670, MWH06.S.1580, MWH06.S.1200, MWH06-1996, MWH06-9915 | 100% | 2021-01-18 | 2021-01-21 | VECA Electric [240 h] | 779 | 0 | 2 | 2-3 | S | 4 | All | 7 | 4 | 8.17- Priority-1 |
|  | 2 | **UMS to UPM** |  | 2020-12-11 | 2021-01-12 |  |  |  |  |  |  |  |  |  |  |  |  |  |  |  |
| MWH06.S.1730 |  | Pull- UMS to COLO-1,2,3 | 20d | 2020-12-11 A | 2021-01-11 A | MWH06.S.1680, MWH06.C3.C1040, MWH06.C2.C1030, MWH06.S.1550, MWH06.C1.C1040, MWH06-1996, MWH06.S.1570, MWH06-9915 | 100% | 2021-01-12 | 2021-02-04 | VECA Electric [1200 h] | 780 | 27.742867461177322 | 2 | 2-2 | S | 4 | All | 7 | 4 |  |
| MWH06.S.1740 |  | Pull- UMS to COLO-4 | 2d | 2021-01-11 A | 2021-01-12 A | MWH06.S.1730 FF, MWH06.C4.C1040, MWH06.S.1590, MWH06-1996, MWH06.S.1570 | 100% |  |  | VECA Electric [120 h] | 783 | 0 | 2 | 2-2 | S | 4 | All | 7 | 4 |  |
|  | 3 | **JAZ** |  | 2020-11-23 | 2020-12-10 |  |  |  |  |  |  |  |  |  |  |  |  |  |  |  |
| MWH06.S.1600 |  | Pull - JAZ to URS | 4d | 2020-11-23 A | 2020-12-02 A | MWH06.S.1310, MWH06.S.1250, MWH06.S.1410, MWH06-2189, MWH06-2132, MWH06-1996 | 100% | 2020-11-30 | 2020-12-03 | VECA Electric [240 h] | 778 | 70 | 2 | 2-2 | S | 4 | All | 7 | 4 |  |
| MWH06.S.1680 |  | Pull - JAZ to UMS | 4d | 2020-12-07 A | 2020-12-10 A | MWH06.S.1600 FF, MWH06.S.1600, MWH06.S.1570, MWH06.S.1470, MWH06.S.1210, MWH06-2133, MWH06.S.1170, MWH06.S.1370, MWH06-2189, MWH06-1996 | 100% | 2021-01-07 | 2021-01-11 | VECA Electric [240 h] | 767 | 100 | 2 | 2-2 | S | 4 | All | 7 | 4 |  |
|  | 3 | **TERM** |  | 2020-12-28 | 2021-04-16 |  |  |  |  |  |  |  |  |  |  |  |  |  |  |  |
|  | 4 | **East UPMS** |  | 2021-01-25 | 2021-02-12 |  |  |  |  |  |  |  |  |  |  |  |  |  |  |  |
| MWH06.S.1490 |  | Term COLO -2 Cell-1 UPM | 3d | 2021-01-25 A | 2021-02-05 A | MWH06.S.1450 FF, MWH06.S.1450, MWH06.S.1400, MWH06.S.1730 | 100% | 2021-02-13 | 2021-02-16 | VECA Electric [180 h] | 789 | 0 | 1 | 3-1 | S | 4 | All | 6 | 11 |  |
| MWH06-2681 |  | Term COLO -1 Cell-3 UPM | 3d | 2021-01-26 A | 2021-01-29 A | MWH06.S.1290, MWH06.S.1380 | 100% | 2021-02-01 | 2021-02-03 | VECA Electric [180 h] | 792 | 0 | 1 | 3-2 | S | 4 | All | 6 | 11 |  |
| MWH06.S.1450 |  | Term COLO -1 Cell-1 UPM | 3d | 2021-01-26 A | 2021-02-05 A | MWH06.S.1730, MWH06.S.1380 | 100% | 2021-02-10 | 2021-02-12 | VECA Electric [180 h] | 792 | 0 | 1 | 3-1 | S | 4 | All | 6 | 11 |  |
| MWH06-2682 |  | Term COLO -2 Cell-3 UPM | 3d | 2021-02-03 A | 2021-02-06 A | MWH06.S.1420, MWH06.S.1400, MWH06-2681 | 100% | 2021-03-04 | 2021-03-06 | VECA Electric [180 h] | 789 | 0 | 1 | 3-2 | S | 4 | All | 6 | 11 |  |
| MWH06-2683 |  | Term COLO -3 Cell-3 UPM | 3d | 2021-02-06 A | 2021-02-12 A | MWH06.S.1520, MWH06.S.1510 | 100% | 2021-03-01 | 2021-03-03 | VECA Electric [180 h] | 790 | 0 | 1 | 3-2 | S | 4 | All | 6 | 11 |  |
| MWH06-2684 |  | Term COLO -4 Cell-3 UPM | 3d | 2021-02-06 A | 2021-02-10 A | MWH06.S.1710, MWH06.S.1720 | 100% | 2021-03-05 | 2021-03-08 | VECA Electric [180 h] | 786 | 0 | 1 | 3-2 | S | 4 | All | 6 | 11 |  |
| MWH06.S.1780 |  | Term COLO -4 Cell-1 UPM | 3d | 2021-02-06 A | 2021-02-10 A | MWH06.S.1610 FF, MWH06.S.1610, MWH06.S.1740, MWH06.S.1720 | 100% | 2021-03-11 | 2021-03-13 | VECA Electric [180 h] | 786 | 0 | 1 | 3-1 | S | 4 | All | 6 | 11 |  |
| MWH06.S.1610 |  | Term COLO -3 Cell-1 UPM | 3d | 2021-02-08 A | 2021-02-10 A | MWH06.S.1490 FF, MWH06.S.1490, MWH06.S.1730, MWH06.S.1510 | 100% | 2021-03-08 | 2021-03-10 | VECA Electric [180 h] | 790 | 0 | 1 | 3-1 | S | 4 | All | 6 | 11 |  |

Notes:
- MWH06.S.1290: VECA Update Notes: UPMs OFCI not onsite yet Crew redirected to another pulling area (UMS to JAZ) to avoid schedule conflict with fluid cooler setting at 1.2 and 1.4
- MWH06.S.1480: VECA Update Notes: UPMs OFCI not onsite yet Discuss w/Garrick as this is actually a suspend and resume or take the credit for the day (fire taping)
- MWH06.S.1500: VECA Update Notes: MV cable pulling crew redirected to URS/UMS pulls and still pulling at colo 1 due to late arrival of UPMs
- MWH06.S.1640: VECA Update Notes: UPMs OFCI not onsite yet
- MWH06.S.1730: VECA Update Notes: Original sequencing had all UPMs arriving at the same time.
- MWH06.S.1600: VECA Update Notes: Per pull plan coordination agreed on 10 day duration, URS was not able to be set until 11/20 due to slab curing
- MWH06.S.1680: VECA Update Notes: Discuss w/Garrick as this is actually a suspend and resume or take the credit for the day (fire taping)
- MWH06-2681: VECA Update Notes: Stacking activity due to late UPM and unable to start pulls, so unable to term

| ID | WBS | Activity | Duration | Start | Finish | Predecessors | Complete | Planned start | Planned finish | Constraint | Resources | MSP Activity ID | VECA % Complete | HRA - Safety Level | MV CREW | COLO | TRADE | CELL | HRA - Required Permit- Priority-1 | HRA - Required Permit- Priority-2 | WBS | HOT ITEMS | Critical Path-2 |
| --- | --- | --- | --- | --- | --- | --- | --- | --- | --- | --- | --- | --- | --- | --- | --- | --- | --- | --- | --- | --- | --- | --- | --- |
|  | 3 | **West UPMS** |  | 2021-01-21 | 2021-02-20 |  |  |  |  |  |  |  |  |  |  |  |  |  |  |  |  |  |  |
| MWH06-2685 |  | Term Admin - UPM | 3d | 2021-01-21 A | 2021-01-25 A | MWH06.S.1330, MWH06.S.1480, MWH06AD-1019 | 100% | 2021-02-01 | 2021-02-03 |  | VECA Electric [180 h] | 794 | 0 | 1 | 3-1 | S | 4 | All | 6 | 11 |  |  |  |
| MWH06.S.1530 |  | Term COLO -2 Cell-2 UPM | 3d | 2021-01-21 A | 2021-01-22 A | MWH06.S.1500, MWH06.S.1440 | 100% | 2021-02-05 | 2021-02-09 |  | VECA Electric [180 h] | 795 | 0 | 1 | 3-1 | S | 4 | All | 6 | 11 |  |  |  |
| MWH06-2677 |  | Term COLO -1 Cell-4 UPM | 3d | 2021-01-25 A | 2021-01-26 A | MWH06.S.1290, MWH06.S.1360 | 100% | 2021-02-01 | 2021-02-03 |  | VECA Electric [180 h] | 794 | 0 | 1 | 3-2 | S | 4 | All | 6 | 11 |  |  |  |
| MWH06.S.1430 |  | Term COLO -1 Cell-2 UPM | 3d | 2021-01-25 A | 2021-01-26 A | MWH06.S.1360, MWH06.S.1330 | 100% | 2021-02-01 | 2021-02-03 |  | VECA Electric [180 h] | 794 | 0 | 1 | 3-1 | S | 4 | All | 6 | 11 |  |  |  |
| MWH06-2678 |  | Term COLO -2 Cell-4 UPM | 3d | 2021-01-28 A | 2021-02-06 A | MWH06-2685, MWH06.S.1420, MWH06.S.1440 | 100% | 2021-02-01 | 2021-02-03 |  | VECA Electric [180 h] | 795 | 0 | 1 | 3-1 | S | 4 | All | 6 | 11 |  |  |  |
| MWH06-2679 |  | Term COLO -3 Cell-4 UPM | 3d | 2021-02-11 A | 2021-02-17 A | MWH06.S.1520, MWH06.S.1560 | 100% | 2021-03-01 | 2021-03-03 |  | VECA Electric [180 h] | 796 | 0 | 1 | 3-2 | S | 4 | All | 6 | 11 |  |  |  |
| MWH06.S.1660 |  | Term COLO -3 Cell-2 UPM | 3d | 2021-02-11 A | 2021-02-17 A | MWH06.S.1530, MWH06.S.1640, MWH06.S.1560 | 100% | 2021-03-01 | 2021-03-03 |  | VECA Electric [180 h] | 796 | 0 | 1 | 3-1 | S | 4 | All | 6 | 11 |  |  |  |
| MWH06-2680 |  | Term COLO -4 Cell-4 UPM | 3d | 2021-02-18 A | 2021-02-20 A | MWH06.S.1710, MWH06.S.1750 | 100% | 2021-03-05 | 2021-03-08 |  | VECA Electric [180 h] | 788 | 0 | 1 | 3-2 | S | 4 | All | 6 | 11 |  |  |  |
| MWH06.S.1810 |  | Term COLO -4 Cell-2 UPM | 3d | 2021-02-18 A | 2021-02-20 A | MWH06.S.1660, MWH06.S.1770, MWH06.S.1750 | 100% | 2021-03-05 | 2021-03-08 |  | VECA Electric [180 h] | 788 | 0 | 1 | 3-1 | S | 4 | All | 6 | 11 |  |  |  |
|  | 1 | **Terms- UMS** |  | 2020-12-28 | 2021-04-16 |  |  |  |  |  |  |  |  |  |  |  |  |  |  |  |  |  |  |
| MWH06.S.1800 |  | Term- JAZ to Structure- (Incl Stress Cones) from ums | 9d | 2020-12-28 A | 2020-12-31 A | MWH06.S.1680 | 100% | 2021-01-02 | 2021-01-12 |  | VECA Electric [360 h] | 791 | 0 | 1 | 3-1 | S | 4 | All | 6 | 11 |  |  |  |
| MWH06.S.1690 |  | Term- UMS- Line Side | 6d | 2021-01-06 A | 2021-01-13 A | MWH06.S.1800, MWH06.S.1680 | 100% | 2021-02-01 | 2021-02-08 |  | VECA Electric [360 h] | 800 | 0 | 1 | 3-1 | S | 4 | All | 6 | 11 |  |  |  |
| MWH06.S.1820 |  | Term- UMS- Load side | 12d | 2021-01-13 A | 2021-01-18 A | MWH06.S.1690, MWH06.C2.C1030, MWH06.S.1550, MWH06-1996, MWH06.S.1570, MWH06.S.1740, MWH06.S.1730 | 100% | 2021-02-10 | 2021-02-23 |  | VECA Electric [720 h] | 798 | 0 | 1 | 3-1 | S | 4 | All | 6 | 11 |  |  |  |
| MWH06.S.1851 |  | UMS Control Power Available CYT | 7d | 2021-02-01 A | 2021-02-18 A | MWH06.S.1820, MWH06.S.1690 | 100% | 2021-02-10 | 2021-02-17 | start on or after 2021-02-10 |  |  |  |  |  | S |  | All |  |  | 6 |  |  |
| MWH06.S.1850 |  | Yellow Tagging for UMS (includes GC, vendor Lvl-2) | 20d | 2021-02-13 A | 2021-03-16 A | MWH06.S.1800, MWH06.S.1760, MWH06.S.1820, MWH06.S.1570, MWH06-P1050, MWH06.S.1851 SS, MWH06-10270, MWH06-10250 FF | 100% | 2021-02-01 | 2021-02-24 |  | VECA Electric [270 h] | 797 |  | 3 | 3-1 | S |  | All | 6 | 11 | 6 | 1 | 1 |
| MWH06-10250 |  | Battery Station Yellow tagging / EPMS Checkouts | 11d | 2021-03-01 A | 2021-03-10 A | MWH06-10251 | 100% | 2021-03-01 | 2021-03-12 | start on or after 2021-02-22 | VECA Electric | 797 |  | 3 | 3-1 | S |  | All | 6 | 11 | 6 | 1 | 1 |
| MWH06-10378 |  | GCPUD NORTH Mobile substation maintance & Mobile Sub re-energization 4/1 – 4/3 | 20d | 2021-03-15 A | 2021-04-16 A |  | 100% | 2021-02-01 | 2021-02-24 |  |  | 797 |  | 3 | 3-1 | S |  | All | 6 | 11 | 6 | 1 | 1 |
| MWH06-10380 |  | GCPUD SOUTH Mobile substation maintance & Mobile Sub re-energization 4/1 – 4/3 | 20d | 2021-03-15 A | 2021-04-16 A | MWH06-10378 SS | 100% | 2021-02-01 | 2021-02-24 |  | VECA Electric [270 h] | 797 |  | 3 | 3-1 | S |  | All | 6 | 11 | 6 | 1 | 1 |
|  | 2 | **Terms- URS** |  | 2020-12-28 | 2021-03-16 |  |  |  |  |  |  |  |  |  |  |  |  |  |  |  |  |  |  |
| MWH06.S.1760 |  | Term- JAS to URS- (Incl Stress Cones) | 9d | 2020-12-28 A | 2020-12-31 A | MWH06.S.1700, MWH06.S.1600 | 100% | 2021-02-03 | 2021-02-13 |  | VECA Electric [360 h] | 787 | 55.000000000000007 | 1 | 3-1 | S | 4 | All | 6 | 11 |  |  |  |
| MWH06.S.1700 |  | Term URS- Line Side | 6d | 2020-12-31 A | 2021-01-04 A | MWH06.S.1770, MWH06.S.1600 | 100% | 2021-02-01 | 2021-02-08 |  | VECA Electric [360 h] | 799 | 0 | 1 | 3-1 | S | 4 | All | 6 | 11 |  |  |  |
| MWH06.S.1790 |  | TERM- URS- Load Side | 12d | 2021-01-04 A | 2021-01-13 A | MWH06.S.1770, MWH06.S.1640, MWH06.S.1500, MWH06.S.1480 | 100% | 2021-02-01 | 2021-02-15 |  | VECA Electric [720 h] | 793 | 0 | 1 | 3-1 | S | 4 | All | 6 | 11 |  |  |  |
| MWH06.S.1841 |  | URS Control Power Available CYT | 6d | 2021-02-01 A | 2021-02-18 A | MWH06.S.1790 | 100% | 2021-02-10 | 2021-02-16 |  | VECA Electric [520 h] | 785 |  | 3 | 3-1 | S |  | All | 6 | 11 | 6 | 1 |  |
| MWH06.S.1840 |  | Yellow Tagging for URS | 20d | 2021-02-13 A | 2021-03-16 A | MWH06.S.1700, MWH06.S.1800, MWH06.S.1790, MWH06.S.1760, MWH06.S.1310, MWH06-P1050, MWH06-2679 FF, MWH06.S.1841 SS, MWH06-10270, MWH06-10250 FF | 100% | 2021-02-01 | 2021-02-24 |  | VECA Electric [270 h] | 785 |  | 3 | 3-1 | S |  | All | 6 | 11 | 6 | 1 |  |

Notes:
- MWH06-2685: VECA Update Notes: Epuipment in admin not complete yet due to wall finishes completing late in this room as a priortiy shift by GC to PCI, MV cable pulling redirected to pull at JAZ as not all the colo 1 UPMs had been set yet and it was decided in the coordination meeting t
- MWH06-2677: VECA Update Notes: UPM terms delayed by lack of UPM and unable to pull MV cable
- MWH06.S.1430: VECA Update Notes: UPM terms delayed by lack of UPM and unable to pull MV cable
- MWH06.S.1800: VECA Update Notes: to start tomorrow

| ID | WBS | Activity | Type | Duration | Start | Finish | Predecessors | Complete | Remaining | Planned start | Planned finish | Total float | Free float | Constraint | Resources | MSP Activity ID | HRA - Safety Level | COLO | MSFT-Funding Releases | CELL | WBS | HRA - Required Permit- Priority-1 | HRA - Required Permit- Priority-2 | Discipline | Critical Path | TRADE | VECA % Complete | VECA- Changed | STEEL ERECTION CRITICAL | MWH06- TRADES | Critical Path-1 | CRITICAL PATH-3 |
| --- | --- | --- | --- | --- | --- | --- | --- | --- | --- | --- | --- | --- | --- | --- | --- | --- | --- | --- | --- | --- | --- | --- | --- | --- | --- | --- | --- | --- | --- | --- | --- | --- |
|  | 4 | **Paving and Hard Scape** |  |  | 2020-10-05 | 2021-09-28 |  |  |  |  |  |  |  |  |  |  |  |  |  |  |  |  |  |  |  |  |  |  |  |  |  |  |
| MWH06.S.1300 |  | Aggregate Road Base |  | 30d | 2020-10-05 A | 2020-11-14 A | MWH06.S.1130, MWH06-9914 | 100% |  | 2020-10-19 | 2020-11-24 |  |  | finish on or before 2020-11-23 | Advantage [4000 h] | 805 | 1 | S | 1C | All | A | 1 | 4 |  |  |  |  |  |  |  |  |  |
| MWH06.S.1870 |  | Curb & Gutter |  | 30d | 2020-11-02 A | 2020-11-06 A | MWH06.S.1040, MWH06.S.1300, MWH06.C4.CS1050, MWH06.C4.CS1060, MWH06.S.1041 | 100% |  | 2020-11-30 | 2021-01-09 |  |  |  | Advantage [1500 h] | 804 | 1 | S | 1C | All | A | 1 | 8 | CONC | 4 | 1 |  |  |  |  |  |  |
| MWH06.S.1880 |  | Pave HMA |  | 20d | 2020-11-07 A | 2020-11-09 A | MWH06.S.1870, MWH06.S.1300, MWH06.S.1860, MWH06.S.1860 FF | 100% |  | 2021-04-05 | 2021-04-28 |  |  |  | Advantage [2000 h] | 802 | 1 | S | 1C | All | A | 8 | 4 | CONC |  | 1 |  |  |  |  |  |  |
| MWH06.S.1860 |  | Plant shutdown for winter |  | 100d | 2020-11-23 A | 2021-04-30 A | MWH06.S.1300 | 100% |  | 2020-11-30 | 2021-04-06 |  |  | start on or after 2020-11-23 |  | 803 | 1 | S |  | All |  | N/A | N/A |  |  |  |  |  |  |  |  |  |
| MWH06.S.1900 |  | Site Lighting |  | 50d | 2021-03-15 A | 2021-09-13 | MWH06.S.1040, MWH06.S.1300, MWH06.S.1870, MWH06.C4.CS1050, MWH06.C4.CS1060, MWH06.S.1041, MWH06-10531, MWH06-10530 | 80% | 10d | 2021-05-03 | 2021-07-02 | 82d | 12d |  | VECA Electric [4000 h] | 806 | 1 | S | 1C | All | A | 1 | 8 |  |  | 4 | 0 | 1 |  |  |  |  |
| MWH06.S.1910 |  | Site Work Complete | milestone | 0d | 2021-09-28 | 2021-09-28 | MWH06.S.1900 FF, MWH06.S.1900, MWH06.S.1160, MWH06.S.1890, MWH06.S.1120, MWH06.S.1880, MWH06-10530 |  |  |  |  | 70d | 118d |  |  | 39 | 2 | S |  | All | A | N/A | N/A |  |  |  |  |  |  |  |  |  |
|  | 5 | **Landscaping & Specialities** |  |  | 2021-05-03 | 2021-09-28 |  |  |  |  |  |  |  |  |  |  |  |  |  |  |  |  |  |  |  |  |  |  |  |  |  |  |
| MWH06.S.1890 |  | Landscape and Site Specialties |  | 45d | 2021-05-03 A | 2021-09-28 | MWH06.S.1880 FF+6d, MWH06-10530 | 51% | 22d | 2021-05-17 | 2021-07-13 | 70d | 0d | start on or after 2021-05-03 | Advantage [2500 h] | 811 | 2 | S | 1C | All | A | 8 | 4 |  |  | 1 |  |  |  |  |  |  |
|  | 7 | **Core & Shell** |  |  | 2020-04-22 | 2020-12-12 |  |  |  |  |  |  |  |  |  |  |  |  |  |  |  |  |  |  |  |  |  |  |  |  |  |  |
|  | 3 | **Admin** |  |  | 2020-04-22 | 2020-09-22 |  |  |  |  |  |  |  |  |  |  |  |  |  |  |  |  |  |  |  |  |  |  |  |  |  |  |
|  | 1 | **Structure** |  |  | 2020-04-22 | 2020-09-22 |  |  |  |  |  |  |  |  |  |  |  |  |  |  |  |  |  |  |  |  |  |  |  |  |  |  |
|  | 1 | **Foundations** |  |  | 2020-04-22 | 2020-06-12 |  |  |  |  |  |  |  |  |  |  |  |  |  |  |  |  |  |  |  |  |  |  |  |  |  |  |
| MWH06-10438 |  | Start Foundation | milestone | 0d | 2020-04-22 A | 2020-04-22 A | MWH-06-04-EW-F, MWH-06-03-EW-F, MWH-06-02-EW-F, MWH-06-01-EW-F, MWH-06-01-PAD-F, MWH06-1977, MWH06-2002, MWH06-P1020, MWH06-C1.P1000, MWH-06-01-FND-S | 100% |  | 2020-04-27 | 2020-04-27 |  |  |  |  | 820 | 2 | A | 1B | ADMIN | B | 1 | 8 | CONC | 3 | 2 |  |  | 3 | 3 |  |  |
| MWH06.AD.CS1000 |  | Perimeter Foundations - Excavate/FRP |  | 15d | 2020-04-22 A | 2020-05-20 A | MWH06-10438, MWH06-1977, MWH06-2002, MWH06-P1020, MWH06-C1.P1000, MWH-06-01-FND-S | 100% |  | 2020-04-27 | 2020-05-14 |  |  |  | OLSON [1500 h]; Advantage [1500 h] | 820 | 2 | A | 1B | ADMIN | B | 1 | 8 | CONC | 3 | 2 |  |  | 3 | 3 |  |  |
| MWH06.AD.CS1010 |  | Perimeter Foundations - Waterproof/Backfill |  | 4d | 2020-05-27 A | 2020-06-05 A | MWH06.AD.CS1000 | 100% |  | 2020-06-01 | 2020-06-04 |  |  |  | OLSON [40 h] | 819 | 2 | A | 1B | ADMIN | B | 1 | 4 | CONC | 3 | 2 |  |  | 3 | 3 |  |  |
| MWH06.AD.CS1020 |  | Interior Footings - Excavate/FRP/Backfill |  | 10d | 2020-06-02 A | 2020-06-12 A | MWH06-1998 FF+10d, MWH06-2002, MWH06-1977, MWH06.AD.CS1010, MWH06.AD.CS1010 FF | 100% |  | 2020-06-05 | 2020-06-16 |  |  |  | OLSON [1000 h]; Advantage [1000 h] | 818 | 2 | A | 1B | ADMIN | B | 1 | 4 | CONC |  | 2 |  |  |  |  |  |  |
|  | 3 | **Structural Steel and Decking** |  |  | 2020-06-22 | 2020-07-10 |  |  |  |  |  |  |  |  |  |  |  |  |  |  |  |  |  |  |  |  |  |  |  |  |  |  |
| MWH06.AD.CS1030 |  | Erect PEMB Steel |  | 9d | 2020-06-22 A | 2020-07-01 A | MWH06-1383 FS+1d, MWH06-2002, MWH06.S.1010, MWH06-2111, MWH-06-01-FND-F | 100% |  | 2020-06-29 | 2020-07-09 |  |  |  | Steel [910 h] | 68 | 3 | A | 1B | ADMIN | B | 5 | 4 |  | 2 |  |  |  | 4 |  | 1 | CP-2 |
| MWH06.AD.CS1040 |  | Secondary Steel |  | 7d | 2020-07-02 A | 2020-07-10 A | MWH06.AD.CS1030 | 100% |  | 2020-08-10 | 2020-08-17 |  |  |  | Steel | 77 | 3 | A |  | ADMIN | B | 5 | 4 |  |  | 3 |  |  |  |  |  |  |
|  | 2 | **Slab on grade** |  |  | 2020-07-22 | 2020-09-22 |  |  |  |  |  |  |  |  |  |  |  |  |  |  |  |  |  |  |  |  |  |  |  |  |  |  |
| MWH06.AD.CS1080 |  | MEP Undeground Rough-In (Interior) |  | 15d | 2020-07-22 A | 2020-08-22 A | MWH06-1999, MWH06.AD.CS1060 | 100% |  | 2020-08-18 | 2020-09-04 |  |  |  | TCM Mechanical [130 h]; VECA Electric [1200 h] | 74 | 1 | A | 1C | ADMIN | B | 1 | 4 |  | 3 | 4 | 100 |  | 2 | 26 | 1 |  |
| MWH06.AD.CS1090 |  | Aggregate Base Course |  | 5d | 2020-08-24 A | 2020-09-02 A | MWH06.AD.CS1080, MWH06.AD.CS1060, MWH06-2003, MWH06-C1.P1400, MWH06.AD.CS1080 FF | 100% |  | 2020-08-31 | 2020-09-04 |  |  |  | OLSON [500 h] | 823 | 1 | A | 1C | ADMIN | B | 1 | 4 |  |  |  |  |  |  |  |  | CP-2 |
| MWH06.AD.CS1100 |  | Slab on Grade |  | 10d | 2020-09-08 A | 2020-09-22 A | MWH06.AD.CS1090, MWH06-C1.P1400, MWH06-9716, MWH06-9717, MWH06-9718, MWH06-9719, MWH06-9720, MWH06-9721, MWH06-9722 | 100% |  | 2020-09-14 | 2020-09-24 |  |  |  | OLSON [800 h] | 71 | 1 | A | 1C | ADMIN | B | 8 | 4 | CONC |  | 2 |  |  |  |  |  | CP-2 |

Notes:
- MWH06.S.1900: VECA Update Notes: Light pole bases held up in submittal, some UG installed, some pole bases to arrive on 12/14/20

| ID | WBS | Activity | Type | Duration | Start | Finish | Predecessors | Complete | Planned start | Planned finish | Resources | MSP Activity ID | HRA - Safety Level | COLO | Critical Path | MSFT-Funding Releases | Critical Path-1 | CELL | WBS | CRITICAL PATH-3 | HRA - Required Permit- Priority-1 | HRA - Required Permit- Priority-2 | TRADE | Discipline | STEEL ERECTION CRITICAL | MWH06- TRADES | VECA % Complete | VECA- Changed |
| --- | --- | --- | --- | --- | --- | --- | --- | --- | --- | --- | --- | --- | --- | --- | --- | --- | --- | --- | --- | --- | --- | --- | --- | --- | --- | --- | --- | --- |
|  | 2 | **Exterior Envelope** |  |  | 2020-07-09 | 2020-08-03 |  |  |  |  |  |  |  |  |  |  |  |  |  |  |  |  |  |  |  |  |  |  |
| MWH06.AD.CS1050 |  | Exterior Insulated Metal Panels Installation |  | 9d | 2020-07-09 A | 2020-07-21 A | MWH06.AD.CS1030 SS+9d, MWH06-2011, MWH06-2013 SS+4d, MWH06-2003, MWH06.AD.CS1040 | 100% | 2020-08-18 | 2020-08-28 | Steel | 78 | 2 | A | 2 | 1B | 1 | ADMIN | B | CP-2 | 5 | 3 |  |  |  |  |  |  |
| MWH06.AD.CS1060 |  | Roof Panels Installation |  | 7d | 2020-07-14 A | 2020-07-21 A | MWH06-C1.P1300, MWH06.AD.CS1040 FF, MWH06.AD.CS1050 SS+5d, MWH06-C1.P1200 | 100% | 2020-08-10 | 2020-08-17 | Steel | 73 | 3 | A | 2 | 1B | 1 | ADMIN | B | CP-2 | 5 | 3 | 3 |  |  |  |  |  |
| MWH06.AD.CS1070 |  | Downspouts & Gutters |  | 10d | 2020-07-22 A | 2020-08-03 A | MWH06.AD.CS1060, MWH06.AD.CS1040, MWH06.AD.CS1050, MWH06-C1.P1200 | 100% | 2020-08-18 | 2020-08-29 | Steel [900 h] | 825 | 2 | A |  | 1B |  | ADMIN | B |  | 3 | 4 |  |  |  |  |  |  |
|  | 1 | **North Elevation** |  |  |  |  |  |  |  |  |  |  |  |  |  |  |  |  |  |  |  |  |  |  |  |  |  |  |
|  | 2 | **East Elevation** |  |  |  |  |  |  |  |  |  |  |  |  |  |  |  |  |  |  |  |  |  |  |  |  |  |  |
|  | 3 | **South Elevation** |  |  |  |  |  |  |  |  |  |  |  |  |  |  |  |  |  |  |  |  |  |  |  |  |  |  |
|  | 4 | **West Elevation** |  |  |  |  |  |  |  |  |  |  |  |  |  |  |  |  |  |  |  |  |  |  |  |  |  |  |
|  | 5 | **Roof** |  |  |  |  |  |  |  |  |  |  |  |  |  |  |  |  |  |  |  |  |  |  |  |  |  |  |
|  | 1 | **COLO-1** |  |  | 2020-05-04 | 2020-10-24 |  |  |  |  |  |  |  |  |  |  |  |  |  |  |  |  |  |  |  |  |  |  |
|  | 1 | **Structure** |  |  | 2020-05-04 | 2020-10-24 |  |  |  |  |  |  |  |  |  |  |  |  |  |  |  |  |  |  |  |  |  |  |
|  | 1 | **Foundations** |  |  | 2020-05-04 | 2020-06-17 |  |  |  |  |  |  |  |  |  |  |  |  |  |  |  |  |  |  |  |  |  |  |
| MWH06.C1.CS1000 |  | Perimeter Foundations - Excavate/FRP |  | 15d | 2020-05-04 A | 2020-05-15 A | MWH06.AD.CS1000, MWH-06-02-FND-S | 100% | 2020-05-15 | 2020-06-03 | OLSON [1500 h]; Advantage [1500 h] | 116 | 2 | 1 | 3 | 1B |  | CS | B |  |  |  | 2 | CONC | 3 | 3 |  |  |
| MWH06.C1.CS1020 |  | Perimeter Foundations - Waterproof Backfill |  | 10d | 2020-05-26 A | 2020-06-17 A | MWH06.C1.CS1000 | 100% | 2020-05-26 | 2020-06-06 | OLSON [100 h] | 117 | 2 | 1 | 3 | 1B |  | CS | B |  |  |  | 2 | CONC | 3 | 3 |  |  |
| MWH06.C1.CS1010 |  | Interior Footings - Excavate/FRP/Backfill |  | 10d | 2020-06-02 A | 2020-06-12 A | MWH06.AD.CS1020 FF, MWH06-C1.P1000 | 100% | 2020-06-13 | 2020-06-25 | OLSON [1000 h]; Advantage [1500 h] | 834 | 2 | 1 |  | 1B |  | CS | B |  |  |  | 2 | CONC |  |  |  |  |
| MWH06-10439 |  | Complete Foundation | milestone | 0d | 2020-06-17 A | 2020-06-17 A | MWH06.C1.CS1020, MWH06.C1.CS1000 | 100% | 2020-05-26 | 2020-05-26 |  | 117 | 2 | 1 | 3 | 1B |  | CS | B |  |  |  | 2 | CONC | 3 | 3 |  |  |
|  | 3 | **Structural Steel and Decking** |  |  | 2020-06-26 | 2020-10-24 |  |  |  |  |  |  |  |  |  |  |  |  |  |  |  |  |  |  |  |  |  |  |
| MWH06.C1.CS1030 |  | Erect PEMB Steel |  | 9d | 2020-06-26 A | 2020-07-06 A | MWH06.C1.CS1010, MWH06.AD.CS1030 SS+5d, MWH06-C1.P1100, MWH-06-01-SUP-S | 100% | 2020-06-29 | 2020-07-09 | Steel | 119 | 3 | 1 |  | 1B |  | CS | B |  |  |  |  |  |  |  |  |  |
| MWH06.C1.CS1040 |  | Secondary Steel |  | 7d | 2020-07-01 A | 2020-07-09 A | MWH06.C1.CS1030 SS+4d | 100% | 2020-08-10 | 2020-08-17 | Steel | 838 | 3 | 1 |  |  |  | CS | B |  |  |  | 3 |  |  |  |  |  |
| MWH06.C1.CS1120 |  | Erect Interior Structural Steel |  | 5d | 2020-10-12 A | 2020-10-24 A | MWH06.C1.CS1110, MWH06-2010, MWH06-9914 | 100% | 2020-11-02 | 2020-11-06 | Steel [500 h] | 836 | 3 | 1 | 2 | 1B |  | CS | B |  |  |  | 3 |  |  |  |  |  |
|  | 2 | **Slab on grade** |  |  | 2020-08-03 | 2020-09-22 |  |  |  |  |  |  |  |  |  |  |  |  |  |  |  |  |  |  |  |  |  |  |
| MWH06.C1.CS1090 |  | MEP Undeground Rough-In (Interior) |  | 15d | 2020-08-03 A | 2020-08-22 A | MWH06.AD.CS1080 | 100% | 2020-08-14 | 2020-09-01 | TCM Mechanical [600 h]; VECA Electric [1500 h] | 840 | 1 | 1 | 4 | 1C | 1 | CS | B |  |  |  | 4 |  | 2 | 26 | 100 | 2 |
| MWH06.C1.CS1100 |  | Aggregate Base Course |  | 5d | 2020-08-26 A | 2020-09-02 A | MWH06.C1.CS1090, MWH06.C1.CS1070 | 100% | 2020-09-05 | 2020-09-11 | OLSON [500 h] | 841 | 1 | 1 | 3 | 1C | 1 | CS | B |  | 1 |  |  |  |  |  |  |  |
| MWH06.C1.CS1110 |  | Slab on Grade |  | 10d | 2020-09-08 A | 2020-09-22 A | MWH06.C1.CS1100, MWH06.AD.CS1100 SS, A1170, MWH06-9716, MWH06-9717, MWH06-9718, MWH06-9719, MWH06-9720, MWH06-9721, MWH06-9722, MWH-06-01-UGU-F | 100% | 2020-09-14 | 2020-09-24 | OLSON [800 h] | 837 | 1 | 1 | 3 | 1C | 1 | CS | B |  |  |  | 2 | CONC |  |  |  |  |

| ID | WBS | Activity | Duration | Start | Finish | Predecessors | Complete | Planned start | Planned finish | Resources | MSP Activity ID | HRA - Safety Level | COLO | Critical Path | MSFT-Funding Releases | CELL | WBS | TRADE | Discipline | STEEL ERECTION CRITICAL | MWH06- TRADES | VECA % Complete | HRA - Required Permit- Priority-1 |
| --- | --- | --- | --- | --- | --- | --- | --- | --- | --- | --- | --- | --- | --- | --- | --- | --- | --- | --- | --- | --- | --- | --- | --- |
|  | 2 | **Exterior Envelope** |  | 2020-07-13 | 2020-08-12 |  |  |  |  |  |  |  |  |  |  |  |  |  |  |  |  |  |  |
|  | 1 | **North Elevation** |  |  |  |  |  |  |  |  |  |  |  |  |  |  |  |  |  |  |  |  |  |
|  | 2 | **East Elevation** |  | 2020-07-13 | 2020-07-18 |  |  |  |  |  |  |  |  |  |  |  |  |  |  |  |  |  |  |
| MWH06.C1.CS1050 |  | Exterior Insulated Metal Panels Installation - East Elevation | 6d | 2020-07-13 A | 2020-07-18 A | MWH06.C1.CS1030, MWH06-C1.P1200, MWH06-2003, MWH06.C1.CS1040, MWH06.AD.CS1040, MWH06.AD.CS1050 SS | 100% | 2020-08-18 | 2020-08-25 | Steel | 127 | 2 | 1 | 2 | 1B | CS | B |  |  |  |  |  |  |
|  | 3 | **South Elevation** |  |  |  |  |  |  |  |  |  |  |  |  |  |  |  |  |  |  |  |  |  |
|  | 4 | **West Elevation** |  | 2020-07-13 | 2020-07-18 |  |  |  |  |  |  |  |  |  |  |  |  |  |  |  |  |  |  |
| MWH06.C1.CS1060 |  | Exterior Insulated Metal Panels Installation - West Elevation | 6d | 2020-07-13 A | 2020-07-18 A | MWH06.C1.CS1050 SS, MWH06.C1.CS1040, MWH06.AD.CS1040, MWH06.AD.CS1050 SS, MWH06-C1.P1200 | 100% | 2020-08-18 | 2020-08-25 | Steel | 183 | 2 | 1 | 2 | 1B | CS | B |  |  |  |  |  |  |
|  | 5 | **Roof** |  | 2020-07-18 | 2020-08-12 |  |  |  |  |  |  |  |  |  |  |  |  |  |  |  |  |  |  |
| MWH06.C1.CS1070 |  | Roof Panels Installation | 7d | 2020-07-18 A | 2020-07-25 A | MWH06.C1.CS1060 SS, MWH06.AD.CS1060 SS | 100% | 2020-08-10 | 2020-08-17 | Steel | 129 | 3 | 1 | 2 | 1B | CS | B | 3 |  |  |  |  |  |
| MWH06.C1.CS1080 |  | Downspouts & Gutters | 15d | 2020-07-27 A | 2020-08-12 A | MWH06.C1.CS1060, MWH06.C1.CS1070, MWH06.AD.CS1070 FF+2d | 100% | 2020-08-18 | 2020-09-04 | Steel [900 h] | 848 | 2 | 1 |  | 1B | CS | B |  |  |  |  |  |  |
|  | 4 | **COLO 2** |  | 2020-05-11 | 2020-11-16 |  |  |  |  |  |  |  |  |  |  |  |  |  |  |  |  |  |  |
|  | 7 | **Core & Shell** |  | 2020-05-11 | 2020-11-16 |  |  |  |  |  |  |  |  |  |  |  |  |  |  |  |  |  |  |
|  | 1 | **Structure** |  | 2020-05-11 | 2020-11-16 |  |  |  |  |  |  |  |  |  |  |  |  |  |  |  |  |  |  |
|  | 1 | **Foundations** |  | 2020-05-11 | 2020-06-20 |  |  |  |  |  |  |  |  |  |  |  |  |  |  |  |  |  |  |
| MWH06.C2.CS1000 |  | Perimeter Foundations - Excavate/FRP/Backfill | 15d | 2020-05-11 A | 2020-06-16 A | MWH06.C1.CS1000 SS+10d, MWH06-C2.P1000, MWH-06-02-FND-S | 100% | 2020-06-22 | 2020-07-09 | OLSON [1500 h]; Advantage [1500 h] | 176 | 2 | 2 | 3 | 1B | CS | B | 2 | CONC | 3 | 3 |  |  |
| MWH06.C2.CS1010 |  | Interior Footings - Excavate/FRP/Backfill | 10d | 2020-06-09 A | 2020-06-20 A | MWH06.C2.CS1000 SS+10d, MWH06.C1.CS1010 FS+20d, MWH06-C2.P1000 | 100% | 2020-07-08 | 2020-07-20 | OLSON [1000 h]; Advantage [1000 h] | 853 | 2 | 2 |  | 1B | CS | B | 2 | CONC |  |  |  |  |
|  | 3 | **Structural Steel and Decking** |  | 2020-07-07 | 2020-11-16 |  |  |  |  |  |  |  |  |  |  |  |  |  |  |  |  |  |  |
| MWH06.C2.CS1020 |  | Erect PEMB Steel | 13d | 2020-07-07 A | 2020-07-22 A | MWH06.C2.CS1010, MWH06.C1.CS1030, MWH06-C2.P1100, MWH-06-02-FND-F, MWH-06-02-SUP-S | 100% | 2020-08-10 | 2020-08-25 | Steel | 124 | 3 | 2 |  | 1B | CS | B |  |  |  |  |  |  |
| MWH06.C2.CS1030 |  | Secondary Steel | 7d | 2020-07-23 A | 2020-08-04 A | MWH06.C2.CS1020 | 100% | 2020-08-10 | 2020-08-17 | Steel [210 h] | 184 | 3 | 2 |  |  | CS | B | 3 |  |  |  |  |  |
| MWH06.C2.CS1120 |  | Erect Interior Structural Steel | 5d | 2020-10-26 A | 2020-11-16 A | MWH06.C2.CS1090, MWH06.C1.CS1120 | 100% | 2020-11-07 | 2020-11-12 | Steel [500 h] | 836 | 3 | 2 | 2 | 1B | CS | B | 3 |  |  |  |  |  |
|  | 2 | **Slab on grade** |  | 2020-08-19 | 2020-10-07 |  |  |  |  |  |  |  |  |  |  |  |  |  |  |  |  |  |  |
| MWH06.C2.CS1070 |  | MEP Undeground Rough-In (Interior) | 15d | 2020-08-19 A | 2020-09-21 A | MWH06.C1.CS1090 FF, MWH06.C1.CS1090, MWH06.C2.CS1020 FF, MWH06.C2.CS1050 FF, MWH06-9716, MWH06-9717, MWH06-9718, MWH06-9719, MWH06-9720, MWH06-9721, MWH06-9722 | 100% | 2020-08-31 | 2020-09-18 | TCM Mechanical [600 h]; VECA Electric [1500 h] | 125 | 1 | 2 |  | 1B | CS | B | 4 |  |  | 26 | 100 |  |
| MWH06.C2.CS1080 |  | Aggregate Base Course | 6d | 2020-10-01 A | 2020-10-07 A | MWH06.C2.CS1070 FF, MWH06.C2.CS1050, MWH06-C2.P1400, MWH06.C2.CS1020 | 100% | 2020-10-19 | 2020-10-26 | OLSON [600 h] | 856 | 1 | 2 |  | 1B | CS | B |  |  |  |  |  | 1 |
| MWH06.C2.CS1090 |  | Slab on Grade | 10d | 2020-10-05 A | 2020-10-07 A | MWH06.C2.CS1080 FF, MWH06.C1.CS1110, A1170, MWH06-C2.P1400, MWH-06-02-UGU-F | 100% | 2020-10-19 | 2020-10-30 | OLSON [800 h] | 121 | 1 | 2 |  | 1B | CS | B | 2 | CONC |  |  |  |  |

| ID | WBS | Activity | Duration | Start | Finish | Predecessors | Complete | Planned start | Planned finish | Resources | MSP Activity ID | HRA - Safety Level | COLO | MSFT-Funding Releases | CELL | WBS | TRADE | Discipline | Critical Path | STEEL ERECTION CRITICAL | MWH06- TRADES | VECA % Complete | HRA - Required Permit- Priority-1 |
| --- | --- | --- | --- | --- | --- | --- | --- | --- | --- | --- | --- | --- | --- | --- | --- | --- | --- | --- | --- | --- | --- | --- | --- |
|  | 2 | **Exterior Envelope** |  | 2020-07-31 | 2020-08-17 |  |  |  |  |  |  |  |  |  |  |  |  |  |  |  |  |  |  |
| MWH06.C2.CS1040 |  | Exterior Insulated Metal Panels Installation | 12d | 2020-07-31 A | 2020-08-13 A | MWH06.C2.CS1020, MWH06.C1.CS1050, MWH06-C2.P1200, MWH06.C2.CS1030 | 100% | 2020-08-18 | 2020-09-01 | Steel [840 h] | 185 | 2 | 2 | 1B | CS | B |  |  |  |  |  |  |  |
| MWH06.C2.CS1050 |  | Roof Panels Installation | 14d | 2020-07-31 A | 2020-08-14 A | MWH06.C1.CS1070, MWH06-C2.P1300, MWH06.C2.CS1030 | 100% | 2020-08-10 | 2020-08-26 | Steel [1680 h] | 123 | 3 | 2 | 1B | CS | B | 3 |  |  |  |  |  |  |
| MWH06.C2.CS1060 |  | Downspouts & Gutters | 15d | 2020-08-10 A | 2020-08-17 A | MWH06.C2.CS1050, MWH06.C1.CS1080, MWH06.C2.CS1040 SS, MWH06.C1.CS1060, MWH06.C2.CS1030, MWH06.C2.CS1040 | 100% | 2020-09-05 | 2020-09-24 | Steel [900 h] | 858 | 2 | 2 | 1B | CS | B |  |  |  |  |  |  |  |
|  | 5 | **COLO 3** |  | 2020-06-16 | 2020-11-20 |  |  |  |  |  |  |  |  |  |  |  |  |  |  |  |  |  |  |
|  | 7 | **Core & Shell** |  | 2020-06-16 | 2020-11-20 |  |  |  |  |  |  |  |  |  |  |  |  |  |  |  |  |  |  |
|  | 1 | **Structure** |  | 2020-06-16 | 2020-11-20 |  |  |  |  |  |  |  |  |  |  |  |  |  |  |  |  |  |  |
|  | 1 | **Foundations** |  | 2020-06-16 | 2020-07-18 |  |  |  |  |  |  |  |  |  |  |  |  |  |  |  |  |  |  |
| MWH06.C3.CS1010 |  | Perimeter Foundations - Excavate/FRP/Backfill | 15d | 2020-06-16 A | 2020-07-18 A | MWH06.C2.CS1000 SS+10d, MWH-06-03-FND-S | 100% | 2020-06-22 | 2020-07-09 | OLSON [1500 h]; Advantage [1500 h] | 233 | 2 | 3 | 1B | CS | B | 2 | CONC | 3 | 3 | 3 |  |  |
| MWH06.C3.CS1000 |  | Interior Footings - Excavate/FRP/Backfill | 10d | 2020-06-24 A | 2020-07-09 A | MWH06.C3.CS1010 SS+10d, MWH06-C3.P1000, MWH06.C2.CS1010 | 100% | 2020-07-08 | 2020-07-20 | OLSON [1000 h] | 863 | 2 | 3 | 1B | CS | B | 2 | CONC | 3 | 3 |  |  |  |
|  | 3 | **Structural Steel and Decking** |  | 2020-07-23 | 2020-11-20 |  |  |  |  |  |  |  |  |  |  |  |  |  |  |  |  |  |  |
| MWH06.C3.CS1020 |  | Erect PEMB Steel | 13d | 2020-07-23 A | 2020-08-06 A | MWH06.C3.CS1000, MWH06.C2.CS1020, MWH06-C3.P1100, MWH-06-03-FND-F, MWH-06-03-SUP-S | 100% | 2020-08-10 | 2020-08-25 | Steel [910 h] | 235 | 3 | 3 | 1B | CS | B |  |  |  |  |  |  |  |
| MWH06.C3.CS1030 |  | Secondary Steel | 6d | 2020-08-06 A | 2020-08-15 A | MWH06.C3.CS1020 | 100% | 2020-08-31 | 2020-09-05 | Steel [210 h] | 241 | 3 | 3 |  | CS | B | 3 |  |  |  |  |  |  |
| MWH06.C3.CS1120 |  | Erect Interior Structural Steel | 5d | 2020-11-16 A | 2020-11-20 A | MWH06.C3.CS1090, MWH06.C2.CS1120 | 100% | 2020-11-23 | 2020-12-01 | Steel [500 h] | 836 | 3 | 3 | 1B | CS | B | 3 |  | 2 |  |  |  |  |
|  | 2 | **Slab on grade** |  | 2020-10-05 | 2020-10-28 |  |  |  |  |  |  |  |  |  |  |  |  |  |  |  |  |  |  |
| MWH06.C3.CS1070 |  | MEP Undeground Rough-In (Interior) | 15d | 2020-10-05 A | 2020-10-15 A | MWH06.C2.CS1070, MWH06.C3.CS1000, MWH06.C3.CS1050, MWH06-9914 | 100% | 2020-10-19 | 2020-11-05 | TCM Mechanical [600 h]; VECA Electric [1500 h] | 181 | 1 | 3 | 1B | CS | B | 4 |  |  |  | 26 | 100 |  |
| MWH06.C3.CS1080 |  | Aggregate Base Course | 6d | 2020-10-15 A | 2020-10-22 A | MWH06.C3.CS1070 FF, MWH06.C3.CS1050, MWH06-C3.P1400 | 100% | 2020-11-06 | 2020-11-12 | OLSON [600 h] | 866 | 1 | 3 | 1B | CS | B |  |  |  |  |  |  | 1 |
| MWH06.C3.CS1090 |  | Slab on Grade | 10d | 2020-10-23 A | 2020-10-28 A | MWH06.C3.CS1080 FF, MWH06.C2.CS1090, MWH06-C3.P1400, MWH-06-03-UGU-F | 100% | 2020-11-02 | 2020-11-12 | OLSON [800 h] | 179 | 1 | 3 | 1B | CS | B | 2 | CONC |  |  |  |  |  |
|  | 2 | **Exterior Envelope** |  | 2020-08-15 | 2020-10-12 |  |  |  |  |  |  |  |  |  |  |  |  |  |  |  |  |  |  |
| MWH06.C3.CS1040 |  | Exterior Insulated Metal Panels Installation | 12d | 2020-08-15 A | 2020-08-22 A | MWH06.C3.CS1020, MWH06.C2.CS1040, MWH06-C3.P1200, MWH06.C3.CS1030 | 100% | 2020-09-08 | 2020-09-22 | Steel [840 h] | 242 | 2 | 3 | 1B | CS | B |  |  |  |  |  |  |  |
| MWH06.C3.CS1050 |  | Roof Panels Installation | 14d | 2020-08-18 A | 2020-09-01 A | MWH06.C2.CS1050, MWH06-C3.P1300, MWH06-C3.P1200 FF, MWH06.C1.CS1060, MWH06.C2.CS1030, MWH06.C2.CS1040, MWH06.C3.CS1030 | 100% | 2020-09-08 | 2020-09-24 | Steel [1680 h] | 244 | 3 | 3 | 1B | CS | B | 3 |  |  |  |  |  |  |
| MWH06.C3.CS1060 |  | Downspouts & Gutters | 6d | 2020-09-02 A | 2020-10-12 A | MWH06.C3.CS1050, MWH06.C2.CS1060, MWH06.C3.CS1040 SS, MWH06-C3.P1200, MWH06.C2.CS1040 SS, MWH06.C1.CS1060, MWH06.C2.CS1030, MWH06.C2.CS1040, MWH06.C3.CS1030, MWH06.C3.CS1040, MWH06-9716, MWH06-9717, MWH06-9718, MWH06-9719, MWH06-9720, MWH06-9721, MWH06-9722 | 100% | 2020-09-16 | 2020-09-22 | Steel [900 h] | 868 | 2 | 3 | 1B | CS | B |  |  |  |  |  |  |  |
|  | 1 | **North Elevation** |  |  |  |  |  |  |  |  |  |  |  |  |  |  |  |  |  |  |  |  |  |
|  | 2 | **East Elevation** |  |  |  |  |  |  |  |  |  |  |  |  |  |  |  |  |  |  |  |  |  |
|  | 3 | **South Elevation** |  |  |  |  |  |  |  |  |  |  |  |  |  |  |  |  |  |  |  |  |  |
|  | 4 | **West Elevation** |  |  |  |  |  |  |  |  |  |  |  |  |  |  |  |  |  |  |  |  |  |
|  | 5 | **Roof** |  |  |  |  |  |  |  |  |  |  |  |  |  |  |  |  |  |  |  |  |  |
|  | 6 | **COLO 4** |  | 2020-06-23 | 2020-12-12 |  |  |  |  |  |  |  |  |  |  |  |  |  |  |  |  |  |  |
|  | 7 | **Core & Shell** |  | 2020-06-23 | 2020-12-12 |  |  |  |  |  |  |  |  |  |  |  |  |  |  |  |  |  |  |
|  | 1 | **Structure** |  | 2020-06-23 | 2020-12-12 |  |  |  |  |  |  |  |  |  |  |  |  |  |  |  |  |  |  |
|  | 1 | **Foundations** |  | 2020-06-23 | 2020-08-06 |  |  |  |  |  |  |  |  |  |  |  |  |  |  |  |  |  |  |
| MWH06.C4.CS1000 |  | Perimeter Foundations - Excavate/FRP/Backfill | 15d | 2020-06-23 A | 2020-07-30 A | MWH06.C3.CS1010, MWH06-C4.P1000, MWH-06-04-FND-S | 100% | 2020-07-06 | 2020-07-23 | OLSON [1500 h]; Advantage [1500 h] | 879 | 2 | 4 | 1B | CS | B | 2 | CONC |  |  | 3 |  |  |
| MWH06.C4.CS1010 |  | Interior Footings - Excavate/FRP/Backfill | 10d | 2020-07-25 A | 2020-08-06 A | MWH06.C4.CS1000 SS+10d, MWH06-C4.P1000 | 100% | 2020-08-29 | 2020-09-10 | OLSON [1000 h]; Advantage [1000 h] | 878 | 2 | 4 | 1B | CS | B | 2 | CONC |  |  |  |  |  |

| ID | WBS | Activity | Duration | Start | Finish | Predecessors | Complete | Planned start | Planned finish | Resources | MSP Activity ID | HRA - Safety Level | COLO | MSFT-Funding Releases | CELL | WBS | TRADE | Critical Path | VECA % Complete | MWH06- TRADES | HRA - Required Permit- Priority-1 | Discipline | CRITICAL PATH-3 | HRA - Required Permit- Priority-2 |
| --- | --- | --- | --- | --- | --- | --- | --- | --- | --- | --- | --- | --- | --- | --- | --- | --- | --- | --- | --- | --- | --- | --- | --- | --- |
|  | 3 | **Structural Steel and Decking** |  | 2020-08-08 | 2020-12-12 |  |  |  |  |  |  |  |  |  |  |  |  |  |  |  |  |  |  |  |
| MWH06.C4.CS1020 |  | Erect PEMB Steel | 13d | 2020-08-08 A | 2020-08-24 A | MWH06.C4.CS1010, MWH06.C3.CS1020, MWH06-C4.P1100, MWH-06-04-FND-F, MWH-06-04-SUP-S | 100% | 2020-08-10 | 2020-08-25 | Steel [910 h] | 881 | 3 | 4 | 1B | CS | B |  |  |  |  |  |  |  |  |
| MWH06.C4.CS1030 |  | Secondary Steel | 7d | 2020-08-21 A | 2020-08-26 A | MWH06.C4.CS1020 | 100% | 2020-08-31 | 2020-09-08 | Steel [210 h] | 730 | 3 | 4 |  | CS | B | 3 |  |  |  |  |  |  |  |
| MWH06.C4.CS1120 |  | Erect Interior Structural Steel | 5d | 2020-12-07 A | 2020-12-12 A | MWH06.C4.CS1090, MWH06.C3.CS1120 | 100% | 2020-12-21 | 2020-12-29 | Steel [500 h] | 836 | 3 | 4 | 1B | CS | B | 3 | 2 |  |  |  |  |  |  |
|  | 2 | **Slab on grade** |  | 2020-10-05 | 2020-11-04 |  |  |  |  |  |  |  |  |  |  |  |  |  |  |  |  |  |  |  |
| MWH06.C4.CS1070 |  | MEP Undeground Rough-In (Interior) | 15d | 2020-10-05 A | 2020-10-15 A | MWH06.C3.CS1070 FF, MWH06.C4.CS1010, MWH06.C3.CS1070, MWH06.C4.CS1050, MWH06-9914 | 100% | 2020-10-31 | 2020-11-18 | TCM Mechanical [600 h]; VECA Electric [1500 h] | 239 | 1 | 4 | 1B | CS | B | 4 |  | 100 | 26 |  |  |  |  |
| MWH06.C4.CS1080 |  | Aggregate Base Course | 6d | 2020-10-15 A | 2020-10-29 A | MWH06.C4.CS1070 FF, MWH06.C4.CS1050 | 100% | 2020-11-11 | 2020-11-18 | OLSON [600 h] | 883 | 1 | 4 | 1B | CS | B |  |  |  |  | 1 |  |  |  |
| MWH06.C4.CS1090 |  | Slab on Grade | 10d | 2020-10-28 A | 2020-11-04 A | MWH06.C4.CS1080 FF, MWH06.C3.CS1090, A1170, MWH06-C4.P1400, MWH-06-04-UGU-F | 100% | 2020-11-02 | 2020-11-12 | OLSON [800 h] | 237 | 1 | 4 | 1B | CS | B | 2 |  |  |  |  | CONC |  |  |
|  | 2 | **Exterior Envelope** |  | 2020-08-24 | 2020-10-15 |  |  |  |  |  |  |  |  |  |  |  |  |  |  |  |  |  |  |  |
| MWH06.C4.CS1040 |  | Exterior Insulated Metal Panels Installation | 12d | 2020-08-24 A | 2020-09-30 A | MWH06.C4.CS1020, MWH06.C3.CS1040, MWH06.C3.CS1040 FF, MWH06-C4.P1200, MWH06.C4.CS1030, MWH06-9716, MWH06-9717, MWH06-9718, MWH06-9719, MWH06-9720, MWH06-9721, MWH06-9722 | 100% | 2020-08-31 | 2020-09-15 | Steel [840 h] | 62 | 2 | 4 | 1B | CS | B |  |  |  |  |  |  |  |  |
| MWH06.C4.CS1050 |  | Roof Panels Installation | 14d | 2020-08-27 A | 2020-10-13 A | MWH06.C3.CS1050, MWH06-C4.P1300, MWH06.C4.CS1040 SF, MWH06.C3.CS1040 SF, MWH06-C3.P1200 FF, MWH06.C2.CS1040 SF, MWH06.C1.CS1060 FF, MWH06.C2.CS1030 FF, MWH06.C2.CS1040 FF, MWH06.C3.CS1030 FF, MWH06.C3.CS1040 FF, MWH06.C4.CS1030 FF, MWH06.C4.CS1040 FF, MWH06-9716, MWH06-9717, MWH06-9718, MWH06-9719, MWH06-9720, MWH06-9721, MWH06-9722, MWH06-9914 | 100% | 2020-09-03 | 2020-09-21 | Steel [1680 h] | 63 | 3 | 4 | 1B | CS | B | 3 |  |  |  |  |  |  |  |
| MWH06.C4.CS1060 |  | Downspouts & Gutters | 15d | 2020-09-07 A | 2020-10-15 A | MWH06.C4.CS1050, MWH06.C3.CS1060, MWH06.C4.CS1040 SS, MWH06.C3.CS1040 SS, MWH06-C3.P1200, MWH06.C2.CS1040 SS, MWH06.C1.CS1060, MWH06.C2.CS1030, MWH06.C2.CS1040, MWH06.C3.CS1030, MWH06.C3.CS1040, MWH06.C4.CS1030, MWH06.C4.CS1040 | 100% | 2020-10-31 | 2020-11-18 | Steel [900 h] | 810 | 2 | 4 | 1B | CS | B |  |  |  |  |  |  |  |  |
|  | 1 | **North Elevation** |  |  |  |  |  |  |  |  |  |  |  |  |  |  |  |  |  |  |  |  |  |  |
|  | 2 | **East Elevation** |  |  |  |  |  |  |  |  |  |  |  |  |  |  |  |  |  |  |  |  |  |  |
|  | 3 | **South Elevation** |  |  |  |  |  |  |  |  |  |  |  |  |  |  |  |  |  |  |  |  |  |  |
|  | 4 | **West Elevation** |  |  |  |  |  |  |  |  |  |  |  |  |  |  |  |  |  |  |  |  |  |  |
|  | 5 | **Roof** |  |  |  |  |  |  |  |  |  |  |  |  |  |  |  |  |  |  |  |  |  |  |
|  | 3 | **Fitout** |  | 2020-08-06 | 2021-11-30 |  |  |  |  |  |  |  |  |  |  |  |  |  |  |  |  |  |  |  |
|  | 2 | **Admin** |  | 2020-08-07 | 2021-07-15 |  |  |  |  |  |  |  |  |  |  |  |  |  |  |  |  |  |  |  |
|  | 3 | **Interior Buildout** |  | 2020-09-28 | 2021-07-15 |  |  |  |  |  |  |  |  |  |  |  |  |  |  |  |  |  |  |  |
|  | 1 | **Partitions** |  | 2020-10-01 | 2021-01-09 |  |  |  |  |  |  |  |  |  |  |  |  |  |  |  |  |  |  |  |
| MWH06AD-1017 |  | MEP Rough-In / Wall & Ceiling | 12d | 2020-10-01 A | 2020-11-17 A | MWH06.AD.CS1100, MWH06-C1.P1500, MWH06-2104, MWH06-2109, MWH06-1995, MWH06-9914 | 100% | 2020-10-19 | 2020-11-02 | PCI [1200 h]; TCM Mechanical [480 h]; VECA Electric [1200 h] | 894 | 2 | A | 1C | ADMIN | 1 | 4 |  | 58.909094627601746 |  |  |  | CP-2 |  |
| MWH06AD-1016 |  | Hang Wall Partitions- Early Walls | 18d | 2020-10-28 A | 2020-11-06 A | MWH06.AD.CS1100, MWH06-2101, MWH06AD-1017 SS+12d | 100% | 2020-11-02 | 2020-11-23 | PCI [900 h] | 509 | 2 | A | 1C | ADMIN | 1 | 6 |  |  |  |  |  |  |  |
| MWH06-9744 |  | Hang Wall Partitions | 18d | 2020-11-02 A | 2021-01-09 A | MWH06.AD.CS1100, MWH06-9915 | 100% | 2020-11-16 | 2020-12-10 | PCI [900 h] | 509 | 2 | A | 1C | ADMIN | 1 | 6 |  |  |  | 3 |  |  | 4 |

Notes:
- MWH06AD-1017: VECA Update Notes: In wall portions completed, Above Ceiling and on wall rough in remaining. After paint and ductwork. Ductwork and paint still ongoing

| ID | WBS | Activity | Duration | Start | Finish | Predecessors | Complete | Planned start | Planned finish | Constraint | Resources | MSP Activity ID | HRA - Safety Level | COLO | MSFT-Funding Releases | CELL | WBS | HRA - Required Permit- Priority-1 | HRA - Required Permit- Priority-2 | VECA % Complete | TRADE | VECA- Changed | Discipline |
| --- | --- | --- | --- | --- | --- | --- | --- | --- | --- | --- | --- | --- | --- | --- | --- | --- | --- | --- | --- | --- | --- | --- | --- |
|  | 2 | **Finishes** |  | 2020-11-09 | 2020-12-10 |  |  |  |  |  |  |  |  |  |  |  |  |  |  |  |  |  |  |
| MWH06AD-1018 |  | Early Room - Finishes | 24d | 2020-11-09 A | 2020-12-10 A | MWH06-9726, MWH06AD-1016, MWH06AD-1024 FF | 100% | 2020-11-16 | 2020-12-17 |  | TCM Mechanical [1200 h]; PCI [960 h] | 896 | 1 | A | 1C | ADMIN | 1 | 3 | 4 |  |  |  |  |
|  | 3 | **Specialities** |  | 2020-09-28 | 2021-07-15 |  |  |  |  |  |  |  |  |  |  |  |  |  |  |  |  |  |  |
| MWH06AD-1024 |  | MEP Overhead | 24d | 2020-09-28 A | 2021-01-14 A | MWH06-2008, MWH06.AD.CS1100, MWH06-2102, MWH06-2103, MWH06-2104, MWH06-2109 | 100% | 2020-10-19 | 2020-11-17 |  | VECA Electric [2400 h] | 897 | 2 | A | 1C | ADMIN | 1 |  |  | 48.825933454147702 | 4 |  |  |
| MWH06AD-1025 |  | Ceilings / Ligthing / FA Devices | 36d | 2021-02-01 A | 2021-04-30 A | MWH06-9744, MWH06.D4.S1020 SS, MWH06AD-1018, MWH06AD-1024, MWH06AD-1021 | 100% | 2021-03-01 | 2021-04-13 |  | PCI [640 h]; VECA Electric [2160 h] | 899 | 2 | A | 1C | ADMIN | 1 | 3 | 4 |  |  |  |  |
| MWH06AD-1010 |  | Loading Dock Equipment & Dock Doors | 20d | 2021-04-26 A | 2021-07-15 A | MWH06-C1.P1200, MWH06.AD.CS1040, MWH06.AD.CS1050, MWH06.C1.CS1110, MWH06AD-1025, MWH06-10531, MWH06-10530 | 100% | 2021-05-05 | 2021-05-28 |  | VECA Electric [400 h] | 901 | 1 | A | 1C | ADMIN | B |  |  | -0.16342982777574222 | 4 | 1 |  |
| MWH06AD-1029 |  | Concrete Floor Sealing/Epoxy | 6d | 2021-05-10 A | 2021-05-15 A | MWH06AD-1025 | 100% | 2021-05-17 | 2021-05-24 | start on or after 2021-05-10 | PCI [120 h] | 104 | 1 | A | 1C | ADMIN | 1 |  |  |  |  |  |  |
|  | 4 | **Systems Buildout** |  | 2020-08-07 | 2021-07-13 |  |  |  |  |  |  |  |  |  |  |  |  |  |  |  |  |  |  |
|  | 5 | **Exterior Equipment Admin** |  | 2020-08-07 | 2021-05-31 |  |  |  |  |  |  |  |  |  |  |  |  |  |  |  |  |  |  |
|  | 1 | **Electrical** |  | 2020-08-07 | 2021-04-28 |  |  |  |  |  |  |  |  |  |  |  |  |  |  |  |  |  |  |
| MWH06-1965 |  | Admin -Electrical Underground Rough-In | 18d | 2020-08-07 A | 2020-08-29 A | MWH06-1999, MWH06.AD.CS1040, MWH06.AD.CS1050, MWH06-C1.P1200, MWH06.AD.CS1070, MWH06-1993 | 100% | 2020-08-10 | 2020-08-31 |  | VECA Electric [960 h] | 906 |  | A | 1C | ADMIN | 3 |  |  | 100 | 4 |  |  |
| MWH06-1961 |  | Exterior Equipment Pads - Electrical | 12d | 2020-08-26 A | 2020-09-25 A | MWH06-1965, MWH06-9716, MWH06-9717, MWH06-9718, MWH06-9719, MWH06-9720, MWH06-9721, MWH06-9722 | 100% | 2020-08-31 | 2020-09-15 |  | OLSON [1200 h]; VECA Electric [240 h] | 905 | 2 | A | 1C | ADMIN | 3 |  |  | 100 | 4 |  | CONC |
| MWH06-1961.1 |  | Exterior Equipment Pads - for UPM's | 4d | 2020-09-18 A | 2020-09-26 A | MWH06-2624, MWH06-1965 | 100% | 2020-11-16 | 2020-11-19 |  | VECA Electric [80 h] | 769 | 2 | A | 1C | ADMIN | 3 |  |  | 100 | 4 |  |  |
| MWH06-1963 |  | Set Exterior Electrical OFCI Equipment | 12d | 2020-10-19 A | 2020-10-23 A | MWH06-1961, MWH06-2000, MWH06-2541, MWH06-2622, MWH06-2624 | 100% | 2020-11-02 | 2020-11-16 |  | VECA Electric [720 h] | 769 | 4 | A | 1C | ADMIN | 3 |  |  | 100 | 4 |  |  |
| MWH06-2686 |  | Set Electrical Equipment-UPM | 4d | 2020-11-24 A | 2020-11-24 A | MWH06-1961.1, MWH06-2621 | 100% | 2020-11-30 | 2020-12-03 |  | VECA Electric [80 h] | 905 | 3 | A | 1C | ADMIN | 3 |  |  | 100 | 4 |  | CONC |
| MWH06-1967 |  | Generator & Utility Power Pull-Test | 12d | 2021-01-04 A | 2021-01-09 A | MWH06AD-1019, MWH06-1961, MWH06-2012, MWH06-1963 | 100% | 2021-01-11 | 2021-01-25 |  | VECA Electric [960 h] | 907 | 2 | A | 1C | ADMIN | 3 | 6 | 11 | -0.35590443165796581 | 4 |  |  |
| MWH06-1968 |  | Electrical Feeders to Mechanical Equipment Pull-Test-Term | 20d | 2021-01-04 A | 2021-02-20 A | MWH06AD-1019, MWH06-1963, MWH06-1967 | 100% | 2021-01-18 | 2021-02-10 |  | VECA Electric [1080 h] | 909 | 2 | A | 1C | ADMIN | 3 | 6 | 11 | -0.47660377358490569 | 4 |  |  |
| MWH06-10161 |  | Generator Term | 4d | 2021-02-23 A | 2021-04-28 A | MWH06-10162, MWH06-10163, MWH06-10331, MWH06-10371 | 100% | 2021-03-05 | 2021-03-09 |  | VECA Electric [450 h] | 907 | 2 | A | 1C | ADMIN | 3 | 6 | 11 | -0.35590443165796581 | 4 |  |  |
|  | 2 | **Mechanical** |  | 2020-08-08 | 2021-01-22 |  |  |  |  |  |  |  |  |  |  |  |  |  |  |  |  |  |  |
| MWH06-1972 |  | Mechanical Underground Rough-In | 18d | 2020-08-08 A | 2020-08-25 A | MWH06-1999, MWH06.AD.CS1040, MWH06.AD.CS1050, MWH06-C1.P1200, MWH06.AD.CS1070 | 100% | 2020-08-10 | 2020-08-31 |  | TCM Mechanical [720 h] | 913 | 2 | A | 1C | ADMIN | 3 |  |  |  | 51 |  |  |
| MWH06-1962 |  | Exterior Equipment Pads - Mechanical | 12d | 2020-10-09 A | 2020-10-13 A | MWH06-1961 FF+6d, MWH06-1972 SS+15d, MWH06-9914, MWH06-9914 FF | 100% | 2020-10-19 | 2020-11-02 |  | OLSON [1200 h]; VECA Electric [240 h] | 912 | 2 | A | 1C | ADMIN | 3 |  |  |  |  |  | CONC |
| MWH06-1964 |  | Set Exterior Mechanical CFCI Equipment (remaning mini splits) | 12d | 2020-10-28 A | 2021-01-22 A | MWH06-1962, MWH06-9915 | 100% | 2020-11-06 | 2020-11-20 |  | VECA Electric [480 h] | 914 | 4 | A | 1C | ADMIN | 3 | 5 | 4 |  |  |  |  |
| MWH06.AD.A1135 |  | Set Gen Stack / Exhaust duct | 3d | 2021-01-22 A | 2021-01-22 A | MWH06-1963, MWH06.C1.C2135 SS | 100% | 2021-02-01 | 2021-02-03 |  | TCM Mechanical [60 h]; Steel [120 h] |  | 4 | A |  | ADMIN | 3 | 5 | 4 |  | 51 |  |  |
|  | 3 | **Plumbing** |  |  |  |  |  |  |  |  |  |  |  |  |  |  |  |  |  |  |  |  |  |
|  | 4 | **Special Systems** |  | 2021-01-11 | 2021-05-31 |  |  |  |  |  |  |  |  |  |  |  |  |  |  |  |  |  |  |
| MWH06-1975 |  | Fire Alarm Installation | 12d | 2021-01-11 A | 2021-01-15 A | MWH06-1963 | 100% | 2021-02-01 | 2021-02-15 |  | VECA Electric [240 h] | 919 | 1 | A | 1C | ADMIN | 3 | 6 | 3 |  |  |  |  |
| MWH06-1976 |  | Controls Installation | 12d | 2021-01-20 A | 2021-05-31 A | MWH06-10482, MWH06-10481, MWH06-10267 FF+4d, MWH06-1963, MWH06-1975 FF, MWH06-1975, MWH06-10531, MWH06-10530 | 100% | 2021-02-16 | 2021-03-02 |  | VECA Electric [720 h] | 920 | 1 | A | 1C | ADMIN | 3 | 6 | 3 | 0 | 4 |  |  |

Notes:
- MWH06AD-1024: VECA Update Notes: Wall finishes not completing on time, framing was re prioritzed to colo 1 and removed from admin space, as well as trade sequence slowing progress. Anticipating framing and Drywall to resume week of 12/14
- MWH06-1963: VECA Update Notes: Gen arrived and was set 10/23/20, anchoring ongoing due anchor holes in tank not large enough for prescribed anchor
- MWH06-2686: VECA Update Notes: Not anchored due to late delivery, crew alocation to telecom tie in, but cable pulling can start

| ID | WBS | Activity | Duration | Start | Finish | Predecessors | Complete | Planned start | Planned finish | Constraint | Resources | MSP Activity ID | VECA % Complete | HRA - Safety Level | COLO | TRADE | MSFT-Funding Releases | CELL | WBS | HRA - Required Permit- Priority-1 | HRA - Required Permit- Priority-2 | MWH06- TRADES | CRITICAL PATH-3 | Critical Path | HOT ITEMS |
| --- | --- | --- | --- | --- | --- | --- | --- | --- | --- | --- | --- | --- | --- | --- | --- | --- | --- | --- | --- | --- | --- | --- | --- | --- | --- |
|  | 1 | **Electrical** |  | 2020-11-16 | 2021-04-30 |  |  |  |  |  |  |  |  |  |  |  |  |  |  |  |  |  |  |  |  |
| MWH06AD-1019 |  | Set Electrical Equipment incl. OH raceways | 36d | 2020-11-16 A | 2020-12-29 A | MWH06AD-1016, MWH06-2505, MWH06-2506, MWH06-2507, MWH06-2508, MWH06-2511, MWH06-2512, MWH06-2514, MWH06-2513 | 100% | 2020-11-23 | 2021-01-13 |  | VECA Electric [2880 h] | 908 | 62.430316306548519 | 2 | A | 4 | 1C | ADMIN | 5 | 5 | 4 |  |  |  |  |
| MWH06AD-1027 |  | Electrical Devices & Trim | 18d | 2021-01-28 A | 2021-04-30 A | MWH06AD-1018 | 100% | 2021-02-01 | 2021-02-22 |  | VECA Electric [1800 h] | 922 | 0 | 1 | A | 4 | 1C | ADMIN | 5 | 6 | 11 |  |  |  |  |
|  | 2 | **Plumbing** |  | 2020-11-16 | 2021-07-13 |  |  |  |  |  |  |  |  |  |  |  |  |  |  |  |  |  |  |  |  |
| MWH06AD-1020 |  | Domestic Water Piping | 18d | 2020-11-16 A | 2020-12-31 A | MWH06AD-1016, MWH06-9915 | 100% | 2020-11-23 | 2020-12-17 |  | TCM Mechanical [360 h] | 924 |  | 1 | A |  | 1C | ADMIN | 5 |  |  |  |  |  |  |
| MWH06AD-1022 |  | Plumbing Devices & Trim | 18d | 2021-06-28 A | 2021-07-13 A | MWH06.C1.Cx2120, MWH06AD-1020, MWH06-9744, MWH06AD-1029, MWH06-10530 | 100% | 2021-07-26 | 2021-08-17 |  | TCM Mechanical [360 h] | 925 |  | 1 | A | 51 | 1C | ADMIN | 5 | 3 | 4 | 22 |  |  |  |
|  | 3 | **Special Systems** |  | 2021-01-26 | 2021-03-29 |  |  |  |  |  |  |  |  |  |  |  |  |  |  |  |  |  |  |  |  |
| MWH06AD-1026 |  | Security Devices & Trim | 18d | 2021-01-26 A | 2021-03-29 A | MWH06AD-1018 | 100% | 2021-02-01 | 2021-02-22 |  |  | 105 |  | 1 | A |  | 1C | ADMIN | 5 | 6 | 11 |  |  |  |  |
|  | 4 | **Mechanical** |  | 2020-11-16 | 2021-02-27 |  |  |  |  |  |  |  |  |  |  |  |  |  |  |  |  |  |  |  |  |
| MWH06AD-1021.1 |  | Set Mechanical Equipment | 15d | 2020-11-16 A | 2020-12-18 A | MWH06AD-1016 | 100% | 2020-11-23 | 2020-12-14 |  | TCM Mechanical [300 h] | 928 |  |  | A | 51 |  | ADMIN | 4 | 5 | 4 |  |  |  |  |
| MWH06AD-1021 |  | Mechanical Ductwork Installation | 18d | 2020-12-14 A | 2020-12-31 A | MWH06AD-1016, MWH06AD-1021.1, MWH06-9915 | 100% | 2020-12-21 | 2021-01-15 |  | TCM Mechanical [360 h] | 900 |  | 2 | A | 51 | 1C | ADMIN | 4 | 3 | 4 |  |  |  |  |
| MWH06AD-1023 |  | Mechanical Devices & Trim | 18d | 2021-01-18 A | 2021-02-27 A | MWH06AD-1019, MWH06AD-1021 | 100% | 2021-02-01 | 2021-02-22 |  | TCM Mechanical [360 h] | 929 |  | 1 | A | 51 | 1C | ADMIN | 4 |  |  |  |  |  |  |
|  | 1 | **COLO-1 Fit out** |  | 2020-08-06 | 2021-07-29 |  |  |  |  |  |  |  |  |  |  |  |  |  |  |  |  |  |  |  |  |
|  | 3 | **Interior Buildout** |  | 2020-10-12 | 2021-01-29 |  |  |  |  |  |  |  |  |  |  |  |  |  |  |  |  |  |  |  |  |
|  | 1 | **Cell 1 Datahall** |  | 2020-10-14 | 2020-12-07 |  |  |  |  |  |  |  |  |  |  |  |  |  |  |  |  |  |  |  |  |
|  | 1 | **Partitions** |  | 2020-10-14 | 2020-11-09 |  |  |  |  |  |  |  |  |  |  |  |  |  |  |  |  |  |  |  |  |
| MWH06.C1.C1080 |  | Overhead MEPFP Rough-In | 10d | 2020-10-14 A | 2020-10-17 A | MWH06.C1.CS1110, MWH-06-01-SOG-F, MWH-06-01-DRY-F | 100% | 2020-10-31 | 2020-11-11 |  | VECA Electric [1200 h] | 935 | 100 | 2 | 1 | 4 | 1C | 1 | 1 | 5 | 4 |  | CP-2 |  |  |
| MWH06.C1.C1030 |  | Frame wall & MEPFP In wall roughin | 5d | 2020-10-26 A | 2020-10-31 A | MWH06.C1.CS1110, MWH06-C1.P1500 | 100% | 2020-11-02 | 2020-11-06 |  | TCM Mechanical [400 h]; VECA Electric [400 h] | 936 |  | 2 | 1 | 6 | 1C | 1 | 1 | 3 | 4 | 23 | CP-2 | Cx |  |
| MWH06.C1.C1100 |  | Early Topout | 3d | 2020-11-02 A | 2020-11-09 A | MWH06.C1.C1030, MWH06.C1.CS1110, MWH06.C1.C1080 SS+6d | 100% | 2020-11-16 | 2020-11-18 |  | PCI [600 h] | 934 |  | 2 | 1 | 6 | 1C | 1 | 1 | 3 | 4 |  | CP-2 |  |  |
|  | 2 | **Finishes** |  | 2020-11-23 | 2020-12-07 |  |  |  |  |  |  |  |  |  |  |  |  |  |  |  |  |  |  |  |  |
| MWH06.C1.C1140 |  | Datahall Finishes- Ceiling Grid | 9d | 2020-11-23 A | 2020-12-07 A | MWH06.C1.CS1120, MWH06.C1.C1100, MWH06-2529, MWH06-9790, MWH06-9791 FF+4d | 100% | 2020-11-30 | 2020-12-10 |  | PCI [400 h] | 939 |  | 3 | 1 | 6 | 1C | 1 | 1 | 3 | 4 |  | CP-2 |  | 4 |
| MWH06-9791 |  | Sprinkler Test | 2d | 2020-11-30 A | 2020-11-30 A | MWH06.C1.C1100 | 100% | 2020-12-21 | 2020-12-22 | start on or after 2020-11-30 |  |  |  | 1 | 1 |  |  |  |  | 3 | 4 |  |  |  |  |
|  | 2 | **Cell 3 Datahall** |  | 2020-10-20 | 2020-12-10 |  |  |  |  |  |  |  |  |  |  |  |  |  |  |  |  |  |  |  |  |
|  | 1 | **Partitions** |  | 2020-10-20 | 2020-11-12 |  |  |  |  |  |  |  |  |  |  |  |  |  |  |  |  |  |  |  |  |
| MWH06.C1.C3070 |  | Overhead MEPFP Rough-In | 10d | 2020-10-20 A | 2020-10-31 A | MWH06.C1.C1080, MWH-06-01-SOG-F, MWH-06-01-DRY-F | 100% | 2020-11-02 | 2020-11-12 |  | VECA Electric [1200 h] | 943 | 100 | 2 | 1 | 4 | 1C | 3 | 1 |  |  |  |  |  |  |
| MWH06.C1.C3010 |  | Frame wall & MEPFP In wall roughin | 5d | 2020-10-26 A | 2020-11-04 A | MWH06.C1.C1030 FF, MWH06-C1.P1500 | 100% | 2020-11-07 | 2020-11-12 |  | TCM Mechanical [400 h]; VECA Electric [400 h] | 937 |  | 2 | 1 | 6 | 1C | 3 | 1 |  |  | 23 |  |  |  |
| MWH06.C1.C3090 |  | Early Topout | 3d | 2020-11-10 A | 2020-11-12 A | MWH06.C1.C3010, MWH06.C1.C3070 SS+6d, MWH06.C1.C1100 | 100% | 2020-11-19 | 2020-11-21 |  | PCI [600 h] | 942 |  | 2 | 1 | 6 | 1C | 3 | 1 |  |  |  |  |  |  |

Notes:
- MWH06AD-1019: VECA Update Notes: Room was not finished with painting delayed our start, holding some of the equipment setting (XFMRs) out to allow for feeder conduit and cable pulling more room. This was communicated in original Admin pull plans as well as the coordination meeting, not r

| ID | WBS | Activity | Duration | Start | Finish | Predecessors | Complete | Planned start | Planned finish | Resources | MSP Activity ID | HRA - Safety Level | COLO | TRADE | HOT ITEMS | MSFT-Funding Releases | CELL | WBS | HRA - Required Permit- Priority-1 | HRA - Required Permit- Priority-2 | VECA % Complete | Critical Path | MWH06- TRADES | Critical Path-1 |
| --- | --- | --- | --- | --- | --- | --- | --- | --- | --- | --- | --- | --- | --- | --- | --- | --- | --- | --- | --- | --- | --- | --- | --- | --- |
|  | 2 | **Finishes** |  | 2020-11-25 | 2020-12-10 |  |  |  |  |  |  |  |  |  |  |  |  |  |  |  |  |  |  |  |
| MWH06.C1.C3120 |  | Datahall Finishes- Ceiling Grid | 10d | 2020-11-25 A | 2020-12-10 A | MWH06.C1.CS1120, MWH06.C1.C3090, MWH06-9790, MWH06.C1.C1140 FF+4d | 100% | 2020-11-30 | 2020-12-11 | PCI [400 h] | 945 | 3 | 1 | 6 | 4 | 1C | 3 | 1 | 3 | 4 |  |  |  |  |
|  | 3 | **Cell 2 Datahall** |  | 2020-10-12 | 2020-12-07 |  |  |  |  |  |  |  |  |  |  |  |  |  |  |  |  |  |  |  |
|  | 1 | **Partitions** |  | 2020-10-12 | 2020-11-09 |  |  |  |  |  |  |  |  |  |  |  |  |  |  |  |  |  |  |  |
| MWH06.C1.C2080 |  | Overhead MEPFP Rough-In | 10d | 2020-10-12 A | 2020-10-16 A | MWH06.C1.CS1110, MWH-06-01-SOG-F, MWH-06-01-DRY-F, MWH06-9914 | 100% | 2020-10-31 | 2020-11-11 | VECA Electric [1200 h] | 949 | 2 | 1 | 4 |  | 1C | 2 | 1 |  |  | 100 | Cx |  |  |
| MWH06.C1.C2030 |  | Frame wall & MEPFP In wall roughin | 5d | 2020-10-26 A | 2020-11-02 A | MWH06.C1.CS1110, MWH06-C1.P1500 | 100% | 2020-11-02 | 2020-11-06 | TCM Mechanical [400 h]; VECA Electric [400 h] | 950 | 2 | 1 | 6 |  | 1C | 2 | 1 |  |  |  | Cx | 23 |  |
| MWH06.C1.C2100 |  | Early Topout | 3d | 2020-11-02 A | 2020-11-09 A | MWH06.C1.C2030, MWH06.C1.CS1110, MWH06.C1.C2080 SS+6d | 100% | 2020-11-16 | 2020-11-18 | PCI [600 h] | 948 | 2 | 1 | 6 |  | 1C | 2 | 1 |  |  |  | Cx |  |  |
|  | 2 | **Finishes** |  | 2020-11-23 | 2020-12-07 |  |  |  |  |  |  |  |  |  |  |  |  |  |  |  |  |  |  |  |
| MWH06.C1.C2130 |  | Datahall Finishes- Ceiling Grid | 10d | 2020-11-23 A | 2020-12-07 A | MWH06.C1.CS1120, MWH06.C1.C2100, MWH06-9790, MWH06.C1.C1140 FF+1d | 100% | 2020-12-03 | 2020-12-15 | PCI [400 h] | 953 | 3 | 1 | 6 | 4 | 1C | 2 | 1 | 3 | 4 |  | Cx |  |  |
|  | 4 | **Cell 4 Datahall** |  | 2020-10-20 | 2020-12-10 |  |  |  |  |  |  |  |  |  |  |  |  |  |  |  |  |  |  |  |
|  | 1 | **Partitions** |  | 2020-10-20 | 2020-11-12 |  |  |  |  |  |  |  |  |  |  |  |  |  |  |  |  |  |  |  |
| MWH06.C1.C4070 |  | Overhead MEPFP Rough-In | 10d | 2020-10-20 A | 2020-10-31 A | MWH06.C1.C2080, MWH-06-01-SOG-F, MWH-06-01-DRY-F | 100% | 2020-11-02 | 2020-11-12 | VECA Electric [1200 h] | 957 | 2 | 1 | 4 |  | 1C | 4 | 1 |  |  | 100 |  |  |  |
| MWH06.C1.C4010 |  | Frame wall & MEPFP In wall roughin | 5d | 2020-10-26 A | 2020-11-07 A | MWH06.C1.C2030 FF, MWH06-C1.P1500 | 100% | 2020-11-07 | 2020-11-12 | TCM Mechanical [400 h]; VECA Electric [400 h] | 951 | 2 | 1 | 6 |  | 1C | 4 | 1 |  |  |  |  | 23 |  |
| MWH06.C1.C4100 |  | Early Topout | 3d | 2020-11-10 A | 2020-11-12 A | MWH06.C1.C4010, MWH06.C1.CS1110, MWH06.C1.C4070 SS+6d, MWH06.C1.C2100 | 100% | 2020-11-19 | 2020-11-21 | PCI [600 h] | 956 | 2 | 1 | 6 |  | 1C | 4 | 1 |  |  |  |  |  |  |
|  | 2 | **Finishes** |  | 2020-11-25 | 2020-12-10 |  |  |  |  |  |  |  |  |  |  |  |  |  |  |  |  |  |  |  |
| MWH06.C1.C4130 |  | Datahall Finishes- Ceiling Grid | 10d | 2020-11-25 A | 2020-12-10 A | MWH06.C1.CS1120, MWH06.C1.C4100, MWH06-9790, MWH06.C1.C2130 FF | 100% | 2020-12-21 | 2021-01-06 | PCI [400 h] | 959 | 3 | 1 | 6 | 4 | 1C | 4 | 1 | 3 | 4 |  |  |  |  |
|  | 5 | **Cell 1 Mechanical Corridor** |  | 2020-10-19 | 2021-01-20 |  |  |  |  |  |  |  |  |  |  |  |  |  |  |  |  |  |  |  |
|  | 1 | **Partitions** |  | 2020-10-19 | 2021-01-20 |  |  |  |  |  |  |  |  |  |  |  |  |  |  |  |  |  |  |  |
| MWH06.C1.C1170 |  | OverHead MEPFP Rough-In ( Add TCM Cross over piping HRA Level-3) | 12d | 2020-10-19 A | 2020-10-23 A | MWH06.C1.CS1110, MWH06-C1.P1500, MWH-06-01-SOG-F, MWH-06-01-DRY-F | 100% | 2020-11-17 | 2020-12-03 | TCM Mechanical [400 h]; VECA Electric [960 h] | 340 | 2 | 1 | 4 |  | 1C | 1 | 2 |  |  | 100 |  | 23 | 1 |
| MWH06.C1.C1120 |  | Frame & Top out | 12d | 2020-10-26 A | 2020-11-06 A | MWH06-C1.P1500, MWH06.C1.CS1110 | 100% | 2020-11-02 | 2020-11-16 | PCI [480 h] | 962 | 2 | 1 | 6 |  | 1C | 1 | 2 |  |  |  |  |  |  |
| MWH06.C1.C1210 |  | Electrical surface mounted Rough-in Above AHU | 5d | 2020-10-26 A | 2020-11-06 A | MWH06.C1.C1170, MWH06.C1.C1170 SS+5d | 100% | 2020-11-07 | 2020-11-12 | VECA Electric [960 h] | 963 | 2 | 1 | 4 |  | 1C | 1 | 2 |  |  | 100 |  |  |  |
| MWH06-9930 |  | Electrical OH Below Mechanical Piping | 8d | 2020-12-11 A | 2020-12-28 A | MWH06-9745 SS+5d, MWH06-9915 | 100% | 2021-01-02 | 2021-01-11 |  |  |  |  |  |  |  |  |  |  |  |  |  |  |  |
| MWH06-9745 |  | Remaining MER raceway across Mech chase | 8d | 2021-01-05 A | 2021-01-20 A | MWH06.C1.C1120, MWH06.C1.C1310 SS+8d, MWH06.C1.C1230, MWH06-9915 | 100% | 2020-12-01 | 2020-12-10 | TCM Mechanical [400 h]; VECA Electric [300 h] | 340 | 2 | 1 | 4 |  | 1C | 1 | 2 | 3 |  |  |  | 23 | 1 |
|  | 2 | **Finishes** |  | 2020-11-12 | 2020-11-20 |  |  |  |  |  |  |  |  |  |  |  |  |  |  |  |  |  |  |  |
| MWH06.C1.C1310 |  | Mechanical Corridor Finishes | 18d | 2020-11-12 A | 2020-11-20 A | MWH06.C1.C1210, MWH06.C1.C1120 | 100% | 2020-11-16 | 2020-12-10 | PCI [180 h] | 965 | 1 | 1 | 6 |  | 1C | 1 | 2 |  |  |  |  |  |  |

Notes:
- MWH06.C1.C1170: VECA Update Notes: Mech Piping and duct work needs to be completed for this area. This activity was marked complete only to show rod drops and spanners prior to Mech starting. This is not soley a VECA activity includes piping and insulation.
- MWH06.C1.C1210: VECA Update Notes: Surface mounted conduit complete for floor sealing and cahu installation immidiatly following wall finishes, duration met

| ID | WBS | Activity | Duration | Start | Finish | Predecessors | Complete | Planned start | Planned finish | Constraint | Resources | MSP Activity ID | VECA % Complete | HRA - Safety Level | COLO | TRADE | MSFT-Funding Releases | Critical Path-1 | CELL | WBS | MWH06- TRADES | HRA - Required Permit- Priority-1 |
| --- | --- | --- | --- | --- | --- | --- | --- | --- | --- | --- | --- | --- | --- | --- | --- | --- | --- | --- | --- | --- | --- | --- |
|  | 6 | **Cell 3 Mechanical Corridor** |  | 2020-10-20 | 2021-01-29 |  |  |  |  |  |  |  |  |  |  |  |  |  |  |  |  |  |
|  | 1 | **Partitions** |  | 2020-10-20 | 2021-01-29 |  |  |  |  |  |  |  |  |  |  |  |  |  |  |  |  |  |
| MWH06.C1.C3200 |  | OverHead MEPFP Rough-In | 12d | 2020-10-20 A | 2020-10-31 A | MWH06.C1.CS1110, MWH06.C1.C1170, MWH06-2105, MWH-06-01-SOG-F, MWH-06-01-DRY-F | 100% | 2020-11-02 | 2020-11-16 |  | TCM Mechanical [400 h]; VECA Electric [960 h] | 342 | 100 | 2 | 1 | 4 | 1C | 1 | 3 | 2 | 23 |  |
| MWH06.C1.C3110 |  | Frame & Top out | 12d | 2020-10-26 A | 2020-11-11 A | MWH06.C1.C3200 SS+5d, MWH06.C1.CS1110 | 100% | 2020-11-02 | 2020-11-16 |  | PCI [480 h] | 968 |  | 2 | 1 | 6 | 1C |  | 3 | 2 |  |  |
| MWH06.C1.C3270 |  | Electrical surface mounted Rough-in Above AHU | 5d | 2020-11-02 A | 2020-11-16 A | MWH06.C1.C3200 | 100% | 2020-11-16 | 2020-11-20 |  | VECA Electric [960 h] | 969 | 100 | 2 | 1 | 4 | 1C |  | 3 | 2 |  |  |
| MWH06-9913 |  | Electrical OH Below Mechanical Piping | 8d | 2021-01-07 A | 2021-01-15 A | MWH06-9755 | 100% | 2021-01-20 | 2021-01-28 |  |  |  |  |  |  |  |  |  |  |  |  |  |
| MWH06-9755 |  | Remaining MER raceway across Mech chase | 8d | 2021-01-15 A | 2021-01-29 A | MWH06.C1.C3110, MWH06.C1.C3370 FF+3d, MWH06.C1.C1230, MWH06.C1.C3290, MWH06-9745 | 100% | 2021-02-01 | 2021-02-10 |  | TCM Mechanical [400 h]; VECA Electric [300 h] | 340 |  | 2 | 1 | 4 | 1C | 1 | 1 | 2 | 23 | 3 |
|  | 2 | **Finishes** |  | 2020-11-17 | 2020-11-30 |  |  |  |  |  |  |  |  |  |  |  |  |  |  |  |  |  |
| MWH06.C1.C3370 |  | Mechanical Corridor Finishes | 18d | 2020-11-17 A | 2020-11-30 A | MWH06.C1.C3270, MWH06.C1.C3110 SS | 100% | 2020-11-24 | 2020-12-18 |  | PCI [180 h] | 971 |  | 1 | 1 | 6 | 1C |  | 3 | 2 |  |  |
|  | 7 | **Cell 2 Mechanical Corridor** |  | 2020-10-19 | 2021-01-16 |  |  |  |  |  |  |  |  |  |  |  |  |  |  |  |  |  |
|  | 1 | **Partitions** |  | 2020-10-19 | 2021-01-16 |  |  |  |  |  |  |  |  |  |  |  |  |  |  |  |  |  |
| MWH06.C1.C2160 |  | OverHead MEPFP Rough-In | 12d | 2020-10-19 A | 2020-10-23 A | MWH06.C1.CS1110, MWH-06-01-DRY-F | 100% | 2020-11-17 | 2020-12-03 |  | TCM Mechanical [400 h]; VECA Electric [960 h] | 344 | 100 | 2 | 1 | 4 | 1C | 1 | 2 | 2 | 23 |  |
| MWH06.C1.C2110 |  | Frame & Top out | 12d | 2020-10-26 A | 2020-11-06 A | MWH06.C1.CS1110 | 100% | 2020-11-02 | 2020-11-16 |  | PCI [480 h] | 974 |  | 2 | 1 | 6 | 1C |  | 2 | 2 |  |  |
| MWH06.C1.C2190 |  | Electrical surface mounted Rough-in Above AHU | 5d | 2020-11-02 A | 2020-11-16 A | MWH06.C1.C2160, MWH06.C1.C2160 SS+5d | 100% | 2020-11-16 | 2020-11-20 |  | VECA Electric [960 h] | 975 | 100 | 2 | 1 | 4 | 1C |  | 2 | 2 |  |  |
| MWH06-9916 |  | Electrical OH Below Mechanical Piping | 8d | 2020-12-11 A | 2020-12-28 A | MWH06-9756, MWH06-9915 | 100% | 2021-01-04 | 2021-01-12 |  |  |  |  |  |  |  |  |  |  |  |  |  |
| MWH06-9756 |  | Remaining MER raceway across Mech chase | 8d | 2021-01-05 A | 2021-01-16 A | MWH06.C1.C2110, MWH06.C1.C2290 SS+5d, MWH06.C1.C2210 | 100% | 2020-12-01 | 2020-12-10 |  | TCM Mechanical [400 h]; VECA Electric [300 h] | 340 |  | 2 | 1 | 4 | 1C | 1 | 1 | 2 | 23 | 3 |
|  | 2 | **Finishes** |  | 2020-11-20 | 2020-11-20 |  |  |  |  |  |  |  |  |  |  |  |  |  |  |  |  |  |
| MWH06.C1.C2290 |  | Mechanical Corridor Finishes | 18d | 2020-11-20 A | 2020-11-20 A | MWH06.C1.C2190, MWH06.C1.C2110 SS | 100% | 2020-11-24 | 2020-12-18 |  | PCI [180 h] | 977 |  | 1 | 1 | 6 | 1C |  | 2 | 2 |  |  |
|  | 8 | **Cell 4 Mechanical Corridor** |  | 2020-10-20 | 2021-01-29 |  |  |  |  |  |  |  |  |  |  |  |  |  |  |  |  |  |
|  | 1 | **Partitions** |  | 2020-10-20 | 2021-01-29 |  |  |  |  |  |  |  |  |  |  |  |  |  |  |  |  |  |
| MWH06.C1.C4190 |  | OverHead MEPFP Rough-In | 12d | 2020-10-20 A | 2020-10-31 A | MWH06.C1.CS1110, MWH06.C1.C2160, MWH06-2105, MWH-06-01-SOG-F, MWH-06-01-DRY-F | 100% | 2020-11-02 | 2020-11-16 |  | TCM Mechanical [400 h]; VECA Electric [960 h] | 346 | 100 | 2 | 1 | 4 | 1C | 1 | 4 | 2 | 23 |  |
| MWH06.C1.C4110 |  | Frame & Top out | 12d | 2020-10-26 A | 2020-11-11 A | MWH06.C1.CS1110 | 100% | 2020-11-02 | 2020-11-16 |  | PCI [480 h] | 980 |  | 2 | 1 | 6 | 1C | 1 | 4 | 2 |  |  |
| MWH06.C1.C4230 |  | Electrical surface mounted Rough-in Above AHU | 5d | 2020-11-02 A | 2020-11-16 A | MWH06.C1.C4190, MWH06.C1.C4190 SS+5d | 100% | 2020-11-16 | 2020-11-20 |  | VECA Electric [960 h] | 981 | 100 | 2 | 1 | 4 | 1C | 1 | 4 | 2 |  |  |
| MWH06-9917 |  | Electrical OH Below Mechanical Piping | 8d | 2021-01-07 A | 2021-01-15 A | MWH06-9757 SS | 100% | 2021-01-20 | 2021-01-28 |  |  |  |  |  |  |  |  |  |  |  |  |  |
| MWH06-9757 |  | Remaining MER raceway across Mech chase | 8d | 2021-01-15 A | 2021-01-29 A | MWH06.C1.C4110, MWH06.C1.C4230, MWH06.C1.C4350 FF+3d, MWH06.C1.C2210, MWH06-9756 | 100% | 2021-02-05 | 2021-02-15 | start on or after 2021-01-14 | TCM Mechanical [400 h]; VECA Electric [300 h] | 340 |  | 2 | 1 | 4 | 1C | 1 | 1 | 2 | 23 | 3 |

Notes:
- MWH06.C1.C3200: VECA Update Notes: Mech Piping and duct work needs to be completed for this area. This activity was marked complete only to show rod drops and spanners prior to Mech starting. This is not soley a VECA activity includes piping and insulation.
- MWH06.C1.C3270: VECA Update Notes: Wall finishes and paint not complete at this time, preventing our start
- MWH06.C1.C2160: VECA Update Notes: Mech Piping and duct work needs to be completed for this area. This activity was marked complete only to show rod drops and spanners prior to Mech starting. This is not soley a VECA activity includes piping and insulation.
- MWH06.C1.C2190: VECA Update Notes: Surface mounted conduit complete for floor sealing and cahu installation immidiatly following wall finishes, duration met
- MWH06.C1.C4190: VECA Update Notes: Mech Piping and duct work needs to be completed for this area. This activity was marked complete only to show rod drops and spanners prior to Mech starting. This is not soley a VECA activity includes piping and insulation.
- MWH06.C1.C4230: VECA Update Notes: Wall finishes and paint not complete at this time, preventing our start

| ID | WBS | Activity | Duration | Start | Finish | Predecessors | Complete | Planned start | Planned finish | Constraint | Resources | MSP Activity ID | HRA - Safety Level | COLO | TRADE | MSFT-Funding Releases | CELL | WBS | VECA % Complete | Critical Path | HOT ITEMS | Critical Path-2 | CRITICAL PATH-3 | HRA - Required Permit- Priority-1 | HRA - Required Permit- Priority-2 | Discipline | MER | Critical Path-1 | MWH06- TRADES | Critical Path mer to COLO |
| --- | --- | --- | --- | --- | --- | --- | --- | --- | --- | --- | --- | --- | --- | --- | --- | --- | --- | --- | --- | --- | --- | --- | --- | --- | --- | --- | --- | --- | --- | --- |
|  | 2 | **Finishes** |  | 2020-11-17 | 2020-11-30 |  |  |  |  |  |  |  |  |  |  |  |  |  |  |  |  |  |  |  |  |  |  |  |  |  |
| MWH06.C1.C4350 |  | Mechanical Corridor Finishes | 5d | 2020-11-17 A | 2020-11-30 A | MWH06.C1.C4230, MWH06.C1.C4110 SS | 100% | 2021-01-02 | 2021-01-07 |  | PCI [180 h] | 983 | 1 | 1 | 6 | 1C | 4 | 2 |  |  |  |  |  |  |  |  |  |  |  |  |
|  | 4 | **Systems Buildout** |  | 2020-08-06 | 2021-07-29 |  |  |  |  |  |  |  |  |  |  |  |  |  |  |  |  |  |  |  |  |  |  |  |  |  |
|  | 1 | **Exterior Equipment Cell 1** |  | 2020-08-14 | 2021-05-03 |  |  |  |  |  |  |  |  |  |  |  |  |  |  |  |  |  |  |  |  |  |  |  |  |  |
|  | 1 | **Electrical** |  | 2020-08-14 | 2021-05-03 |  |  |  |  |  |  |  |  |  |  |  |  |  |  |  |  |  |  |  |  |  |  |  |  |  |
| MWH06.C1.C1000 |  | Electrical Underground Rough-In | 12d | 2020-08-14 A | 2020-09-19 A | MWH06.C1.CS1080, MWH06.C1.CS1060 FS+4d, MWH06.C1.CS1070 FS+2d, MWH06-9716, MWH06-9717, MWH06-9718, MWH06-9719, MWH06-9720, MWH06-9721, MWH06-9722 | 100% | 2020-08-31 | 2020-09-15 |  | VECA Electric [960 h] | 50 | 2 | 1 | 4 | 1C | 1 | 3 | 100 | (New)-1 | 5 | 1 | CP-1 | 1 | 4 |  |  |  |  |  |
| MWH06.C1.C1050 |  | Exterior Equipment Pads - Electrical | 12d | 2020-09-19 A | 2020-10-10 A | MWH06.C1.CS1070 SS+7d, MWH06.C1.C1000, MWH06-9716, MWH06-9717, MWH06-9718, MWH06-9719, MWH06-9720, MWH06-9721, MWH06-9722 | 100% | 2020-09-03 | 2020-09-18 |  | OLSON [1200 h]; VECA Electric [240 h] | 94 | 2 | 1 | 4 | 1C | 1 | 3 | 100 | (New)-1 |  |  | CP-3 | 1 | 4 | CONC | 1 |  |  |  |
| MWH06.C1.C1010 |  | Exterior Equipment Pads - for UPM's | 4d | 2020-09-21 A | 2020-09-24 A | MWH06.C1.C1000 SS, MWH06-9716, MWH06-9717, MWH06-9718, MWH06-9719, MWH06-9720, MWH06-9721, MWH06-9722 | 100% | 2020-09-28 | 2020-10-01 |  | OLSON [400 h]; VECA Electric [80 h] | 378 | 2 | 1 | 2 | 1C | 1 | 3 |  |  |  |  |  | 1 | 4 |  |  |  |  |  |
| MWH06.C1.C1090 |  | Set Exterior Electrical OFCI Equipment - GEN | 12d | 2020-10-12 A | 2020-10-15 A | MWH06.C1.C1050, MWH06.C1.E1040, MWH06.C1.E1050, MWH06-9914 | 100% | 2020-10-12 | 2020-10-26 |  | VECA Electric [480 h] | 987 | 4 | 1 | 4 | 1C | 1 | 3 | 100 |  |  |  |  | 5 | 4 |  |  |  |  |  |
| MWH06.C1.C1040 |  | Set Electrical Equipment-UPM | 4d | 2020-12-08 A | 2020-12-08 A | MWH06.C1.C1010, MWH06.C1.E1010, MWH06.C1.E1000 | 100% | 2021-01-02 | 2021-01-06 |  | VECA Electric [80 h] | 89 | 3 | 1 | 4 |  | 1 | 3 | 100 |  |  |  |  | 5 | 4 |  |  |  |  |  |
| MWH06.C1.C1250 |  | Lift & Set MER in Place | 5d | 2020-12-16 A | 2020-12-16 A | MWH06.C1.E1320, MWH06.C1.E1140, MWH06.C1.C1050, MWH06-C1.P1600, MWH06.S.1130, MWH06.S.1300 | 100% | 2021-01-02 | 2021-01-07 |  | VECA Electric [120 h] | 989 | 4 | 1 | 4 | 1C | 1 | 3 | 0 | (New)-1 |  |  | CP-3 | 5 | 4 |  | 4 | 2 | MER | 1 |
| MWH06.C1.C1300 |  | Assemble MER & Complete Shipping Split (SE) | 10d | 2020-12-17 A | 2021-01-07 A | MWH06.C1.C1250 | 100% | 2021-01-02 | 2021-01-13 |  |  | 57 | 2 | 1 |  | 1C | 1 | 3 |  | (New)-1 |  |  | CP-3 | 5 | 4 |  | 4 | 2 | MER | 1 |
| MWH06.C1.C1280 |  | Steel Support for OH Conductors & Cable Tray Installation | 5d | 2020-12-18 A | 2020-12-24 A | MWH06.C1.C1250 | 100% | 2021-01-02 | 2021-01-07 |  | Steel [160 h] | 988 | 3 | 1 | 3 | 1C | 1 | 3 |  |  |  |  |  | 5 | 2 |  |  |  |  |  |
| MWH06.C1.C1360 |  | GEN & UPM to MER Cable Bus Install | 10d | 2021-01-05 A | 2021-01-16 A | MWH06.C1.C1280, MWH06.C1.C1300, MWH06-9931 FF+3d, MWH06.C1.C1090 | 100% | 2021-01-11 | 2021-01-22 |  | VECA Electric [560 h] | 990 | 2 | 1 | 4 | 1C | 1 | 3 | 0 |  |  |  |  | 5 | 4 |  |  |  |  | 1 |
| MWH06.C1.C1420 |  | Generator & Utility Power Pull | 4d | 2021-01-08 A | 2021-02-20 A | MWH06.C1.C1360, MWH06.C1.C1090, MWH06.C1.C1280, MWH06.D6.C1.C1150, MWH06-10254, MWH06-10279, MWH06-10278 | 100% | 2021-02-01 | 2021-02-04 |  | VECA Electric [320 h] | 84 | 2 | 1 | 4 | 1C | 1 | 3 | 0 |  |  |  |  | 6 | 11 |  |  |  |  | 1 |
| MWH06-10278 |  | Generator & Utility Power Term | 8d | 2021-02-19 A | 2021-02-26 A | MWH06.C1.C1360, MWH06.C1.C1280, MWH06.C1.C1090, MWH06-10279, MWH06.D6.C1.C1150, MWH06-10254 | 100% | 2021-02-01 | 2021-02-10 |  | VECA Electric [640 h] | 84 | 2 | 1 | 4 | 1C | 1 | 3 | 0 |  |  |  |  | 6 | 11 |  |  |  |  | 1 |
| MWH06.C1.C1410 |  | Electrical Feeders to Mechanical Equipment Pull-Test-Term | 20d | 2021-03-01 A | 2021-03-18 A | MWH06.C1.C1090, MWH06.C1.C1110, MWH06.C1.C1280, MWH06.C1.C1300, MWH06.D6.C1.C1140, MWH06-9930, MWH06-9931, MWH06.C1.C1420, MWH06-10151, MWH06-10155 | 100% | 2021-03-22 | 2021-04-14 |  | VECA Electric [1080 h] | 991 | 2 | 1 | 4 | 1C | 1 | 3 | 0 | 6 |  |  | CP-1 | 6 | 11 |  |  |  |  | 1 |
| MWH06-10489 |  | Remaining Mechanical Equipment (ADP01) Termimations | 4d | 2021-04-28 A | 2021-05-03 A | MWH06-10491, MWH06-10436, MWH06.C1.C1090, MWH06.C1.C1110, MWH06.C1.C1280, MWH06.C1.C1300, MWH06.D6.C1.C1140, MWH06-9930, MWH06-9931, MWH06.C1.C1420, MWH06-10151, MWH06-10155 | 100% | 2021-03-18 | 2021-03-23 |  | VECA Electric | 991 | 2 | 1 | 4 | 1C | 1 | 3 | 0 | 6 |  |  | CP-1 | 6 | 11 |  |  |  |  | 1 |
|  | 2 | **Mechanical** |  | 2020-08-21 | 2021-01-29 |  |  |  |  |  |  |  |  |  |  |  |  |  |  |  |  |  |  |  |  |  |  |  |  |  |
| MWH06.C1.C1020 |  | Mechanical/Plumbing Underground Rough-In | 12d | 2020-08-21 A | 2020-09-08 A | MWH06.C1.C1000 SS+6d, MWH06-9716, MWH06-9717, MWH06-9718, MWH06-9719, MWH06-9720, MWH06-9721, MWH06-9722 | 100% | 2020-08-31 | 2020-09-15 |  | TCM Mechanical [720 h] | 994 | 1 | 1 | 51 | 1C | 1 | 3 |  | 6 | 5 |  | CP-1 | 1 | 4 |  |  |  |  |  |
| MWH06.C1.C1060 |  | Exterior Equipment Pads - Mechanical | 12d | 2020-09-19 A | 2020-10-13 A | MWH06.C1.C1050 SS, MWH06-9716, MWH06-9717, MWH06-9718, MWH06-9719, MWH06-9720, MWH06-9721, MWH06-9722, MWH06-9914 | 100% | 2020-09-28 | 2020-10-12 |  | OLSON [1200 h]; VECA Electric [240 h] | 96 | 2 | 1 |  | 1C | 1 | 3 |  | 6 |  |  | CP-1 | 1 | 4 | CONC |  |  |  |  |
| MWH06.C1.C1070 |  | Steel Supports for Exterior Mechanical Equipment (Fluid Cooler Steel & Pipe Steel Supports) | 4d | 2020-11-09 A | 2020-11-12 A | MWH06.C1.C1060 | 100% | 2020-11-30 | 2020-12-03 |  | Steel [160 h] | 415 | 3 | 1 | 3 | 1C | 1 | 3 |  | 6 |  |  | CP-1 | 3 | 4 |  |  |  |  |  |
| MWH06.C1.C1110 |  | Set Exterior Mechanical OFCI Equipment (FC) | 12d | 2020-11-23 A | 2020-12-08 A | MWH06.C1.C1070, MWH06-C1.P1700, MWH06.C1.E1120, MWH06.C1.E1130 | 100% | 2020-11-30 | 2020-12-14 |  | TCM Mechanical [720 h] | 992 | 3 | 1 | 51 | 1C | 1 | 3 |  | 6 |  |  | CP-1 | 5 | 4 |  |  |  |  |  |
| MWH06.C1.C1111 |  | Set Exterior Water Treatment equipment | 2d | 2020-12-05 A | 2020-12-07 A | MWH06.D5.S1000, MWH06.D5.S1030, MWH06.C1.C1060 | 100% | 2021-01-02 | 2021-01-04 |  | TCM Mechanical [120 h] |  | 2 |  |  |  | 1 |  |  |  |  |  |  | 5 | 4 |  |  |  |  |  |
| MWH06.C1.C1130 |  | Mechanical Equipment Piping Connections | 12d | 2021-01-13 A | 2021-01-29 A | MWH06.C1.C1110 SS+5d, MWH06.C1.C1111 | 100% | 2021-02-01 | 2021-02-15 | start on or after 2021-01-13 | TCM Mechanical [720 h] | 90 | 2 | 1 | 51 | 1C | 1 | 3 |  |  |  |  |  | 3 | 4 |  |  |  |  |  |
| MWH06.C1.C1135 |  | Set Gen Stack / Exhaust duct | 3d | 2021-01-19 A | 2021-01-19 A | MWH06.C1.C1090, MWH06.C1.C1110 | 100% | 2021-02-01 | 2021-02-03 | start on or after 2021-01-18 | TCM Mechanical [60 h]; Steel [120 h] |  | 4 | 1 | 51 |  | 1 | 3 |  |  |  |  |  | 5 | 4 |  |  |  |  |  |

Notes:
- MWH06.C1.C1090: VECA Update Notes: Gen arrived and was set 10/15/20, anchoring ongoing due anchor holes in tank not large enough for prescribed anchor
- MWH06.C1.C1040: VECA Update Notes: UPMs OFCI not onsite yet, activity incorrectly statused in a previous update, still issues with anchors, not preventing MV cable from being pullled
- MWH06.C1.C1250: VECA Update Notes: No MER OFCI, expecting this to arrive onsite on 12/16/20
- MWH06.C1.C1420: VECA Update Notes: Incentive is on the start and finish of the last Cell in a COLO
- MWH06-10278: VECA Update Notes: Incentive is on the start and finish of the last Cell in a COLO

| ID | WBS | Activity | Duration | Start | Finish | Predecessors | Complete | Planned start | Planned finish | Constraint | Resources | MSP Activity ID | HRA - Safety Level | COLO | Critical Path | MSFT-Funding Releases | CELL | WBS | CRITICAL PATH-3 | HRA - Required Permit- Priority-1 | HRA - Required Permit- Priority-2 | VECA % Complete | TRADE | HOT ITEMS | Critical Path-2 | Discipline | MER | Critical Path-1 | MWH06- TRADES | Critical Path mer to COLO |
| --- | --- | --- | --- | --- | --- | --- | --- | --- | --- | --- | --- | --- | --- | --- | --- | --- | --- | --- | --- | --- | --- | --- | --- | --- | --- | --- | --- | --- | --- | --- |
|  | 3 | **Plumbing** |  |  |  |  |  |  |  |  |  |  |  |  |  |  |  |  |  |  |  |  |  |  |  |  |  |  |  |  |
|  | 4 | **Special Systems** |  | 2021-01-04 | 2021-04-30 |  |  |  |  |  |  |  |  |  |  |  |  |  |  |  |  |  |  |  |  |  |  |  |  |  |
| MWH06.C1.C1160 |  | Fire Alarm Installation | 12d | 2021-01-04 A | 2021-01-29 A | MWH06.C1.C1110, MWH06.C1.C1090, MWH06-10370 | 100% | 2021-01-11 | 2021-01-25 |  | VECA Electric [240 h] | 997 | 1 | 1 | 6 | 1C | 1 | 3 | CP-1 | 6 | 3 |  |  |  |  |  |  |  |  |  |
| MWH06.C1.C1440 |  | Controls Installation | 16d | 2021-01-04 A | 2021-04-30 A | MWH06.C1.C1090, MWH06.C1.C1110, MWH06.C1.C1160, MWH06-10267 FF+8d, MWH06-10370 | 100% | 2021-03-05 | 2021-03-24 |  | VECA Electric [640 h] | 91 | 1 | 1 | 6 | 1C | 1 | 3 | CP-1 | 6 | 3 | 0 | 4 |  |  |  |  |  |  |  |
|  | 2 | **Exterior Equipment Cell 3** |  | 2020-08-21 | 2021-05-07 |  |  |  |  |  |  |  |  |  |  |  |  |  |  |  |  |  |  |  |  |  |  |  |  |  |
|  | 1 | **Electrical** |  | 2020-08-29 | 2021-03-31 |  |  |  |  |  |  |  |  |  |  |  |  |  |  |  |  |  |  |  |  |  |  |  |  |  |
| MWH06.C1.C3000 |  | Electrical Underground Rough-In | 12d | 2020-08-29 A | 2020-09-19 A | MWH06.C1.C1000, MWH06-9716, MWH06-9717, MWH06-9718, MWH06-9719, MWH06-9720, MWH06-9721, MWH06-9722 | 100% | 2020-09-03 | 2020-09-18 |  | VECA Electric [960 h] | 1000 | 2 | 1 | (New)-1 | 1C | 3 | 3 |  |  |  | 100 | 4 | 5 | 1 |  |  |  |  |  |
| MWH06.C1.C3050 |  | Exterior Equipment Pads - Electrical | 12d | 2020-09-19 A | 2020-10-14 A | MWH06.C1.C3000, MWH06-9716, MWH06-9717, MWH06-9718, MWH06-9719, MWH06-9720, MWH06-9721, MWH06-9722 | 100% | 2020-09-28 | 2020-10-12 |  | OLSON [1200 h]; VECA Electric [240 h] | 308 | 2 | 1 | (New)-1 | 1C | 3 | 3 |  |  |  | 100 | 4 |  |  | CONC | 1 |  |  |  |
| MWH06.C1.C3020 |  | Exterior Equipment Pads - for UPM's | 4d | 2020-09-21 A | 2020-09-24 A | MWH06.C1.C3000 SS, MWH06-9716, MWH06-9717, MWH06-9718, MWH06-9719, MWH06-9720, MWH06-9721, MWH06-9722 | 100% | 2020-09-28 | 2020-10-01 |  | OLSON [400 h]; VECA Electric [80 h] | 380 | 2 | 1 |  | 1C | 3 | 3 |  |  |  |  | 2 | 5 | 1 |  |  |  |  |  |
| MWH06.C1.C3080 |  | Set Exterior Electrical OFCI Equipment - GEN | 12d | 2020-11-13 A | 2020-11-13 A | MWH06.C1.C3050, MWH06.C1.E1180, MWH06.C1.E1190 | 100% | 2020-11-30 | 2020-12-14 |  | VECA Electric [480 h] | 1001 | 4 | 1 |  | 1C | 3 | 3 |  |  |  | 100 | 4 |  |  |  |  |  |  |  |
| MWH06.C1.C3040 |  | Set Electrical Equipment-UPM Cell -3 | 4d | 2020-11-24 A | 2020-11-24 A | MWH06.C1.C3020, MWH06.C1.E1080, MWH06.C1.E1090 | 100% | 2020-12-11 | 2020-12-15 |  | VECA Electric [80 h] | 715 | 3 | 1 |  |  | 3 | 3 |  |  |  | 100 | 4 | 5 | 1 |  |  |  |  |  |
| MWH06.C1.C3210 |  | Lift & Set MER in Place | 5d | 2021-01-06 A | 2021-01-07 A | MWH06.C1.E1380, MWH06.C1.E1220, MWH06.C1.C3050 | 100% | 2021-01-11 | 2021-01-18 |  | VECA Electric [120 h] | 1003 | 4 | 1 | (New)-1 | 1C | 3 | 3 |  | 5 | 4 | 0 | 4 |  |  |  | 4 | 2 | MER | 1 |
| MWH06.C1.C3250 |  | Steel Support for OH Conductors & Cable Tray Installation | 4d | 2021-01-07 A | 2021-01-13 A | MWH06.C1.C3050, MWH06.C1.C3080, MWH06.C1.C3210, MWH06.C1.C1280 | 100% | 2021-01-18 | 2021-01-22 |  | Steel [160 h] | 1002 | 3 | 1 |  | 1C | 3 | 3 |  | 5 | 2 |  | 3 |  |  |  |  |  |  |  |
| MWH06.C1.C3300 |  | Assemble MER & Complete Shipping Split (SE) | 10d | 2021-01-07 A | 2021-01-21 A | MWH06.C1.C3210 | 100% | 2021-01-11 | 2021-01-23 |  |  | 1007 | 2 | 1 | (New)-1 | 1C | 3 | 3 |  | 5 | 4 |  |  |  |  |  | 4 | 2 | MER | 1 |
| MWH06.C1.C3350 |  | GEN & UPM to MER Cable Bus Install | 10d | 2021-01-18 A | 2021-01-25 A | MWH06.C1.C3250, MWH06.C1.C3300, MWH06-9932 FF+3d, MWH06.C1.C3080 | 100% | 2021-02-01 | 2021-02-12 |  | VECA Electric [560 h] | 1005 | 2 | 1 |  | 1C | 3 | 3 |  | 5 | 4 | 0 | 4 |  |  |  |  |  |  | 1 |
| MWH06.C1.C3410 |  | Generator & Utility Power Pull | 4d | 2021-02-08 A | 2021-02-26 A | MWH06.C1.C3350, MWH06.C1.C3080, MWH06.C1.C3250, MWH06.D6.C1.C3150 | 100% | 2021-03-02 | 2021-03-05 |  | VECA Electric [320 h] | 1004 | 2 | 1 |  | 1C | 3 | 3 |  | 6 | 11 | 0 | 4 |  |  |  |  |  |  | 1 |
| MWH06-10366 |  | Generator & Utility Power Test-Term | 8d | 2021-03-01 A | 2021-03-08 A | MWH06.C1.C3410, MWH06.C1.C3350, MWH06.C1.C3080, MWH06.C1.C3250, MWH06.D6.C1.C3150 | 100% | 2021-03-22 | 2021-03-30 |  | VECA Electric [640 h] | 1004 | 2 | 1 |  | 1C | 3 | 3 |  | 6 | 11 | 0 | 4 |  |  |  |  |  |  | 1 |
| MWH06.C1.C3390 |  | Electrical Feeders to Mechanical Equipment Pull-Test-Term | 20d | 2021-03-04 A | 2021-03-31 A | MWH06.C1.C3130, MWH06.C1.C3080, MWH06.C1.C3250, MWH06.C1.C3300, MWH06.D6.C1.C3140, MWH06-9913, MWH06-9932, MWH06.C1.C3410 SS+8d, MWH06-10164, MWH06-10172, MWH06-10366 | 100% | 2021-03-22 | 2021-04-14 |  | VECA Electric [1080 h] | 1006 | 2 | 1 |  | 1C | 3 | 3 |  | 6 | 11 | 0 | 4 |  |  |  |  |  |  | 1 |
|  | 2 | **Mechanical** |  | 2020-08-21 | 2021-02-24 |  |  |  |  |  |  |  |  |  |  |  |  |  |  |  |  |  |  |  |  |  |  |  |  |  |
| MWH06.C1.C3030 |  | Mechanical/Plumbing Underground Rough-In | 12d | 2020-08-21 A | 2020-09-08 A | MWH06.C1.C3000 SS+2d, MWH06-9716, MWH06-9717, MWH06-9718, MWH06-9719, MWH06-9720, MWH06-9721, MWH06-9722 | 100% | 2020-09-28 | 2020-10-12 |  | TCM Mechanical [720 h] | 1013 | 1 | 1 |  | 1C | 3 | 3 |  |  |  |  | 51 |  |  |  |  |  |  |  |
| MWH06.C1.C3060 |  | Exterior Equipment Pads - Mechanical | 12d | 2020-09-19 A | 2020-10-14 A | MWH06.C1.C3050 SS+6d, MWH06.C1.C3030 SS+15d, MWH06-9716, MWH06-9717, MWH06-9718, MWH06-9719, MWH06-9720, MWH06-9721, MWH06-9722 | 100% | 2020-10-16 | 2020-10-30 |  | OLSON [1200 h]; VECA Electric [240 h] | 1012 | 2 | 1 |  | 1C | 3 | 3 |  |  |  |  |  |  |  | CONC |  |  |  |  |
| MWH06.C1.C3100 |  | Steel Supports for Exterior Mechanical Equipment (Fluid Cooler Steel & Pipe Steel Supports) | 4d | 2020-11-09 A | 2020-11-12 A | MWH06.C1.C3060 | 100% | 2020-11-30 | 2020-12-03 |  | Steel [160 h] | 417 | 3 | 1 |  | 1C | 3 | 3 |  |  |  |  | 3 |  |  |  |  |  |  |  |
| MWH06.C1.C3131 |  | Set Exterior Water Treatment equipment | 2d | 2020-11-23 A | 2020-12-08 A | MWH06.D5.S1000, MWH06.D5.S1030, MWH06.C1.C3060 | 100% | 2020-12-07 | 2020-12-08 |  | TCM Mechanical [120 h] |  | 2 |  |  |  | 3 |  |  | 5 | 4 |  |  |  |  |  |  |  |  |  |
| MWH06.C1.C3130 |  | Set Exterior Mechanical OFCI Equipment (FC) | 12d | 2020-11-30 A | 2020-12-09 A | MWH06.C1.C3100, MWH06.C1.E1260, MWH06.C1.E1270 | 100% | 2021-01-02 | 2021-01-15 |  | TCM Mechanical [720 h] | 1008 | 3 | 1 |  | 1C | 3 | 3 |  | 5 | 4 |  | 51 |  |  |  |  |  |  |  |
| MWH06.C1.C3135 |  | Set Gen Stack / Exhaust duct | 3d | 2021-01-22 A | 2021-01-22 A | MWH06.C1.C3080, MWH06.C1.C3130, MWH06.C1.C1135 | 100% | 2021-02-01 | 2021-02-03 |  | TCM Mechanical [60 h]; Steel [120 h] |  | 4 | 1 |  |  | 3 | 3 |  | 5 | 4 |  | 51 |  |  |  |  |  |  |  |
| MWH06.C1.C3150 |  | Mechanical Equipment Piping Connections | 6d | 2021-02-17 A | 2021-02-24 A | MWH06.C1.C3130 SS+5d, MWH06.C1.C3131, MWH06.C1.C2140 | 100% | 2021-03-15 | 2021-03-22 | start on or after 2021-01-13 | TCM Mechanical [720 h] | 1014 | 2 | 1 |  | 1C | 3 | 3 |  | 3 | 4 |  | 51 |  |  |  |  |  |  |  |

Notes:
- MWH06.C1.C3080: VECA Update Notes: Gen arrived and was set 11/13/20, anchoring ongoing due anchor holes in tank not large enough for prescribed anchor
- MWH06.C1.C3040: VECA Update Notes: Not fully anchored but cable pulling can start
- MWH06.C1.C3410: VECA Update Notes: Incentive is on the start and finish of the last Cell in a COLO
- MWH06-10366: VECA Update Notes: Incentive is on the start and finish of the last Cell in a COLO

| ID | WBS | Activity | Duration | Start | Finish | Predecessors | Complete | Planned start | Planned finish | Constraint | Resources | MSP Activity ID | HRA - Safety Level | COLO | MSFT-Funding Releases | CELL | WBS | HRA - Required Permit- Priority-1 | HRA - Required Permit- Priority-2 | VECA % Complete | TRADE | Discipline | MER | Critical Path | COLO CRITICAL | Critical Path-1 | MWH06- TRADES | CRITICAL PATH-3 | Critical Path mer to COLO |
| --- | --- | --- | --- | --- | --- | --- | --- | --- | --- | --- | --- | --- | --- | --- | --- | --- | --- | --- | --- | --- | --- | --- | --- | --- | --- | --- | --- | --- | --- |
|  | 3 | **Plumbing** |  |  |  |  |  |  |  |  |  |  |  |  |  |  |  |  |  |  |  |  |  |  |  |  |  |  |  |
|  | 4 | **Special Systems** |  | 2021-01-18 | 2021-05-07 |  |  |  |  |  |  |  |  |  |  |  |  |  |  |  |  |  |  |  |  |  |  |  |  |
| MWH06.C1.C3180 |  | Fire Alarm Installation | 12d | 2021-01-18 A | 2021-04-30 A | MWH06.C1.C3130, MWH06.C1.C3080 | 100% | 2021-02-01 | 2021-02-15 | start on or after 2021-01-18 | VECA Electric [240 h] | 1017 | 1 | 1 | 1C | 3 | 3 | 6 | 3 |  |  |  |  |  |  |  |  |  |  |
| MWH06.C1.C3450 |  | Controls Installation | 16d | 2021-01-18 A | 2021-05-07 A | MWH06.C1.C3080, MWH06.C1.C3130, MWH06-10267 FF+8d | 100% | 2021-03-09 | 2021-03-27 |  | VECA Electric [640 h] | 1018 | 1 | 1 | 1C | 3 | 3 | 6 | 3 | 0 | 4 |  |  |  |  |  |  |  |  |
|  | 3 | **Exterior Equipment Cell 2** |  | 2020-08-06 | 2021-05-10 |  |  |  |  |  |  |  |  |  |  |  |  |  |  |  |  |  |  |  |  |  |  |  |  |
|  | 1 | **Electrical** |  | 2020-08-06 | 2021-05-03 |  |  |  |  |  |  |  |  |  |  |  |  |  |  |  |  |  |  |  |  |  |  |  |  |
| MWH06.C1.C2000 |  | Electrical Underground Rough-In | 12d | 2020-08-06 A | 2020-09-08 A | MWH06.C1.CS1080, MWH06.C1.CS1070, MWH06-9716, MWH06-9717, MWH06-9718, MWH06-9719, MWH06-9720, MWH06-9721, MWH06-9722 | 100% | 2020-08-14 | 2020-08-28 |  | VECA Electric [960 h] | 1021 | 2 | 1 | 1C | 2 | 3 |  |  | 100 | 4 |  |  |  |  |  |  |  |  |
| MWH06.C1.C2050 |  | Exterior Equipment Pads - Electrical | 12d | 2020-09-21 A | 2020-10-02 A | MWH06.C1.C2000, MWH06-9716, MWH06-9717, MWH06-9718, MWH06-9719, MWH06-9720, MWH06-9721, MWH06-9722 | 100% | 2020-09-05 | 2020-09-21 |  | OLSON [1200 h]; VECA Electric [240 h] | 310 | 2 | 1 | 1C | 2 | 3 |  |  | 100 | 4 | CONC | 1 |  |  |  |  |  |  |
| MWH06.C1.C2090 |  | Set Exterior Electrical OFCI Equipment - GEN | 12d | 2020-10-12 A | 2020-10-13 A | MWH06.C1.C2050, MWH06.C1.E1060, MWH06.C1.E1070, MWH06-9914, MWH06-9914 FF | 100% | 2020-10-26 | 2020-11-07 |  | VECA Electric [480 h] | 1022 | 4 | 1 | 1C | 2 | 3 |  |  | 100 | 4 |  |  |  |  |  |  |  |  |
| MWH06.C1.C2010 |  | Exterior Equipment Pads - for UPM's | 4d | 2020-10-19 A | 2020-10-22 A | MWH06.C1.C2000 SS | 100% | 2020-11-02 | 2020-11-05 |  | OLSON [400 h]; VECA Electric [80 h] | 382 | 2 | 1 | 1C | 2 | 3 |  |  |  | 2 |  |  |  |  |  |  |  |  |
| MWH06.C1.C2040 |  | Set Electrical Equipment-UPM | 4d | 2020-11-24 A | 2020-11-24 A | MWH06.C1.C2010, MWH06.C1.E1020, MWH06.C1.E1030 | 100% | 2020-11-30 | 2020-12-03 |  | VECA Electric [80 h] | 770 | 3 | 1 |  | 2 | 3 |  |  | 100 | 4 |  |  |  |  |  |  |  |  |
| MWH06.C1.C2270 |  | Lift & Set MER in Place | 5d | 2020-12-22 A | 2020-12-23 A | MWH06.C1.C2050, MWH06.C1.E1150, MWH06.C1.E1330, MWH06.C1.C1250, MWH06-9915 | 100% | 2021-01-02 | 2021-01-07 |  | VECA Electric [120 h] | 1010 | 4 | 1 | 1C | 2 | 3 | 5 | 4 | 0 | 4 |  | 4 | (New)-1 | 1 | 2 | MER | CP-3 | 1 |
| MWH06.C1.C2340 |  | Assemble MER & Complete Shipping Split (SE) | 10d | 2020-12-23 A | 2021-01-09 A | MWH06.C1.C2270 | 100% | 2021-01-11 | 2021-01-23 | start on or after 2021-01-04 |  | 1028 | 2 | 1 | 1C | 2 | 3 | 5 | 4 |  |  |  | 4 | (New)-1 | 1 | 2 | MER |  | 1 |
| MWH06.C1.C2280 |  | Steel Support for OH Conductors & Cable Tray Installation | 4d | 2021-01-04 A | 2021-01-07 A | MWH06.C1.C2050, MWH06.C1.C2270 | 100% | 2021-01-11 | 2021-01-15 | start on or after 2021-01-04 | Steel [160 h] | 1023 | 3 | 1 | 1C | 2 | 3 | 5 | 2 |  | 3 |  |  |  |  |  |  |  |  |
| MWH06.C1.C2390 |  | GEN & UPM to MER Cable Bus Install | 10d | 2021-01-06 A | 2021-01-20 A | MWH06.C1.C2280, MWH06.C1.C2340, MWH06-9933 FF+3d, MWH06.C1.C2090 | 100% | 2021-01-20 | 2021-01-30 |  | VECA Electric [560 h] | 1025 | 2 | 1 | 1C | 2 | 3 | 5 | 4 | 0 | 4 |  |  |  |  |  |  |  | 1 |
| MWH06-10365 |  | Generator & Utility Power Pull | 4d | 2021-01-22 A | 2021-02-26 A | MWH06-10280, MWH06.C1.C2390, MWH06.C1.C2280, MWH06.C1.C2090, MWH06.D6.C1.C2150 | 100% | 2021-02-02 | 2021-02-05 |  | VECA Electric [320 h] | 1024 | 2 | 1 | 1C | 2 | 3 | 6 | 11 | 0 | 4 |  |  |  |  |  |  |  | 1 |
| MWH06.C1.C2430 |  | Generator & Utility Power Test-Term | 8d | 2021-02-27 A | 2021-03-08 A | MWH06-10280, MWH06.C1.C2390, MWH06.C1.C2090, MWH06.C1.C2280, MWH06.D6.C1.C2150, MWH06-10365 | 100% | 2021-03-01 | 2021-03-09 |  | VECA Electric [640 h] | 1024 | 2 | 1 | 1C | 2 | 3 | 6 | 11 | 0 | 4 |  |  |  |  |  |  |  | 1 |
| MWH06.C1.C2420 |  | Electrical Feeders to Mechanical Equipment Pull-Test-Term | 20d | 2021-03-01 A | 2021-03-18 A | MWH06.C1.C2120, MWH06.C1.C2090, MWH06.C1.C2280, MWH06.C1.C2340, MWH06.D6.C1.C2140, MWH06-9916, MWH06-9933, MWH06.C1.C2430 FF+4d, MWH06-10165, MWH06-10176 | 100% | 2021-03-22 | 2021-04-14 |  | VECA Electric [1080 h] | 1026 | 2 | 1 | 1C | 2 | 3 | 6 | 11 | 0 | 4 |  |  |  |  |  |  |  | 1 |
| MWH06-10490 |  | Remaining Mechanical Equipment (ADP01) Termimations | 20d | 2021-04-28 A | 2021-05-03 A | MWH06-10491, MWH06-10436, MWH06.C1.C2120, MWH06.C1.C2090, MWH06.C1.C2280, MWH06.C1.C2340, MWH06.D6.C1.C2140, MWH06-9916, MWH06-9933, MWH06.C1.C2430 FF+4d, MWH06-10165, MWH06-10176 | 100% | 2021-03-22 | 2021-04-14 |  | VECA Electric | 1026 | 2 | 1 | 1C | 2 | 3 | 6 | 11 | 0 | 4 |  |  |  |  |  |  |  | 1 |
|  | 2 | **Mechanical** |  | 2020-08-21 | 2021-02-20 |  |  |  |  |  |  |  |  |  |  |  |  |  |  |  |  |  |  |  |  |  |  |  |  |
| MWH06.C1.C2020 |  | Mechanical/Plumbing Underground Rough-In | 12d | 2020-08-21 A | 2020-09-08 A | MWH06.C1.C2000 SS+6d, MWH06-9716, MWH06-9717, MWH06-9718, MWH06-9719, MWH06-9720, MWH06-9721, MWH06-9722 | 100% | 2020-08-31 | 2020-09-15 |  | TCM Mechanical [720 h] | 1032 | 1 | 1 | 1C | 2 | 3 |  |  |  | 51 |  |  |  |  |  |  |  |  |
| MWH06.C1.C2060 |  | Exterior Equipment Pads - Mechanical | 12d | 2020-09-21 A | 2020-10-19 A | MWH06.C1.C2050 SS+1d, MWH06.C1.C2020, MWH06-9716, MWH06-9717, MWH06-9718, MWH06-9719, MWH06-9720, MWH06-9721, MWH06-9722 | 100% | 2020-10-05 | 2020-10-17 |  | OLSON [1200 h]; VECA Electric [240 h] | 1031 | 2 | 1 | 1C | 2 | 3 |  |  |  |  | CONC |  |  |  |  |  |  |  |
| MWH06.C1.C2070 |  | Steel Supports for Exterior Mechanical Equipment (Fluid Cooler Steel & Pipe Steel Supports) | 4d | 2020-11-09 A | 2020-11-13 A | MWH06.C1.C2060 | 100% | 2020-11-30 | 2020-12-03 |  | Steel [160 h] | 419 | 3 | 1 | 1C | 2 | 3 |  |  |  | 3 |  |  |  |  |  |  |  |  |
| MWH06.C1.C2120 |  | Set Exterior Mechanical OFCI Equipment (FC) | 12d | 2020-11-30 A | 2020-12-09 A | MWH06.C1.C2070, MWH06.C1.E1160, MWH06.C1.E1170 | 100% | 2020-11-30 | 2020-12-14 |  | TCM Mechanical [720 h] | 1027 | 3 | 1 | 1C | 2 | 3 | 5 | 4 |  | 51 |  |  |  |  |  |  |  |  |
| MWH06.C1.C2121 |  | Set Exterior Water Treatment equipment | 2d | 2020-12-07 A | 2020-12-08 A | MWH06.D5.S1000, MWH06.D5.S1030, MWH06.C1.C2060 | 100% | 2021-01-02 | 2021-01-04 |  | TCM Mechanical [120 h] |  | 2 | 1 |  | 2 |  | 5 | 4 |  |  |  |  |  |  |  |  |  |  |
| MWH06.C1.C2135 |  | Set Gen Stack / Exhaust duct | 3d | 2021-01-22 A | 2021-01-22 A | MWH06.C1.C2090, MWH06.C1.C2120, MWH06.C1.C1135 SS | 100% | 2021-02-01 | 2021-02-03 |  | TCM Mechanical [60 h]; Steel [120 h] |  | 4 | 1 |  | 2 | 3 | 5 | 4 |  | 51 |  |  |  |  |  |  |  |  |
| MWH06.C1.C2140 |  | Mechanical Equipment Piping Connections | 6d | 2021-02-09 A | 2021-02-20 A | MWH06.C1.C2120 SS+5d, MWH06.C1.C2121, MWH06.C1.C2121 FF, MWH06.C1.C4150 | 100% | 2021-03-08 | 2021-03-13 | start on or after 2021-01-13 | TCM Mechanical [720 h] | 1033 | 2 | 1 | 1C | 2 | 3 | 3 | 4 |  | 51 |  |  |  |  |  |  |  |  |

Notes:
- MWH06.C1.C2090: VECA Update Notes: Gen arrived and was set 10/9/20, anchoring ongoing due anchor holes in tank not large enough for prescribed anchor
- MWH06.C1.C2040: VECA Update Notes: Not fully anchored but cable pulling can start
- MWH06.C1.C2270: Steps: lift; set
- MWH06-10365: VECA Update Notes: Incentive is on the start and finish of the last Cell in a COLO
- MWH06.C1.C2430: VECA Update Notes: Incentive is on the start and finish of the last Cell in a COLO

| ID | WBS | Activity | Duration | Start | Finish | Predecessors | Complete | Planned start | Planned finish | Constraint | Resources | MSP Activity ID | HRA - Safety Level | COLO | MSFT-Funding Releases | CELL | WBS | HRA - Required Permit- Priority-1 | HRA - Required Permit- Priority-2 | VECA % Complete | TRADE | Discipline | MER | Critical Path | COLO CRITICAL | Critical Path-1 | Critical Path-2 | MWH06- TRADES | Critical Path mer to COLO |
| --- | --- | --- | --- | --- | --- | --- | --- | --- | --- | --- | --- | --- | --- | --- | --- | --- | --- | --- | --- | --- | --- | --- | --- | --- | --- | --- | --- | --- | --- |
|  | 3 | **Plumbing** |  |  |  |  |  |  |  |  |  |  |  |  |  |  |  |  |  |  |  |  |  |  |  |  |  |  |  |
|  | 4 | **Special Systems** |  | 2021-01-04 | 2021-05-10 |  |  |  |  |  |  |  |  |  |  |  |  |  |  |  |  |  |  |  |  |  |  |  |  |
| MWH06.C1.C2410 |  | Fire Alarm Installation | 12d | 2021-01-04 A | 2021-04-01 A | MWH06.C1.C2120, MWH06.C1.C2090 | 100% | 2021-02-18 | 2021-03-04 |  | VECA Electric [240 h] | 1036 | 1 | 1 | 1C | 2 | 3 | 6 | 3 |  |  |  |  |  |  |  |  |  |  |
| MWH06.C1.C2450 |  | Controls Installation | 16d | 2021-01-04 A | 2021-05-10 A | MWH06.C1.C2090, MWH06.C1.C2120, MWH06-10267 FF+8d | 100% | 2021-03-06 | 2021-03-25 |  | VECA Electric [640 h] | 1037 | 1 | 1 | 1C | 2 | 3 | 6 | 3 | 0 | 4 |  |  |  |  |  |  |  |  |
|  | 4 | **Exterior Equipment Cell 4** |  | 2020-08-29 | 2021-05-07 |  |  |  |  |  |  |  |  |  |  |  |  |  |  |  |  |  |  |  |  |  |  |  |  |
|  | 1 | **Electrical** |  | 2020-08-29 | 2021-04-13 |  |  |  |  |  |  |  |  |  |  |  |  |  |  |  |  |  |  |  |  |  |  |  |  |
| MWH06.C1.C4000 |  | Electrical Underground Rough-In | 12d | 2020-08-29 A | 2020-09-19 A | MWH06.C1.C2000 SS, MWH06-9716, MWH06-9717, MWH06-9718, MWH06-9719, MWH06-9720, MWH06-9721, MWH06-9722 | 100% | 2020-09-05 | 2020-09-21 |  | VECA Electric [960 h] | 735 | 2 | 1 | 1C | 4 | 3 |  |  | 100 | 4 |  |  |  |  |  |  |  |  |
| MWH06.C1.C4020 |  | Exterior Equipment Pads - for UPM's | 4d | 2020-09-21 A | 2020-09-24 A | MWH06.C1.C4000 SS, MWH06.C1.C4000, MWH06-9716, MWH06-9717, MWH06-9718, MWH06-9719, MWH06-9720, MWH06-9721, MWH06-9722 | 100% | 2020-09-28 | 2020-10-01 |  | OLSON [400 h]; VECA Electric [80 h] | 384 | 2 | 1 | 1C | 4 | 3 |  |  |  | 2 |  |  |  |  |  |  |  |  |
| MWH06.C1.C4050 |  | Exterior Equipment Pads - Electrical | 12d | 2020-09-21 A | 2020-10-21 A | MWH06.C1.C4000, MWH06-9716, MWH06-9717, MWH06-9718, MWH06-9719, MWH06-9720, MWH06-9721, MWH06-9722 | 100% | 2020-09-28 | 2020-10-12 |  | OLSON [1200 h]; VECA Electric [240 h] | 312 | 2 | 1 | 1C | 4 | 3 |  |  | 100 | 4 | CONC | 1 |  |  |  |  |  |  |
| MWH06.C1.C4090 |  | Set Exterior Electrical OFCI Equipment - GEN | 12d | 2020-10-19 A | 2020-10-22 A | MWH06.C1.C4050, MWH06.C1.E1200, MWH06.C1.E1210 | 100% | 2020-11-02 | 2020-11-16 |  | VECA Electric [480 h] | 1040 | 4 | 1 | 1C | 4 | 3 |  |  | 100 | 4 |  |  |  |  |  |  |  |  |
| MWH06.C1.C4040 |  | Set Electrical Equipment-UPM | 4d | 2020-11-24 A | 2020-11-24 A | MWH06.C1.C4020, MWH06.C1.E1110, MWH06.C1.E1100 | 100% | 2020-11-30 | 2020-12-03 |  | VECA Electric [80 h] | 747 | 3 | 1 |  | 4 | 3 |  |  | 100 | 4 |  |  |  |  |  |  |  |  |
| MWH06.C1.C4270 |  | Lift & Set MER in Place | 5d | 2021-01-08 A | 2021-01-09 A | MWH-06-01-ROJ-F, MWH06.C1.E1470, MWH06.C1.E1230, MWH06.C1.C4050 | 100% | 2021-01-11 | 2021-01-18 |  | VECA Electric [120 h] | 1041 | 4 | 1 | 1C | 4 | 3 | 5 | 4 | 0 | 4 |  | 4 | (New)-1 | 1 | 2 | 2 | MER | 1 |
| MWH06.C1.C4340 |  | Assemble MER & Complete Shipping Split (SE) | 10d | 2021-01-09 A | 2021-01-22 A | MWH06.C1.C4270 | 100% | 2021-01-11 | 2021-01-23 |  |  | 1046 | 2 | 1 | 1C | 4 | 3 | 5 | 4 |  |  |  | 4 | (New)-1 | 1 | 2 |  | MER | 1 |
| MWH06.C1.C4280 |  | Steel Support for OH Conductors & Cable Tray Installation | 4d | 2021-01-11 A | 2021-01-14 A | MWH06.C1.C4050, MWH06.C1.C4270, MWH06.C1.C2280 | 100% | 2021-01-11 | 2021-01-15 |  | Steel [160 h] | 808 | 3 | 1 | 1C | 4 | 3 | 5 | 2 |  | 3 |  |  |  |  | 2 | 2 |  |  |
| MWH06.C1.C4370 |  | GEN & UPM to MER Cable Bus Install | 8d | 2021-01-25 A | 2021-02-05 A | MWH06.C1.C4280, MWH06.C1.C4340 FF+3d, MWH06-9934 FF+2d, MWH06.C1.C4090 | 100% | 2021-02-04 | 2021-02-13 |  | VECA Electric [560 h] | 1043 | 2 | 1 | 1C | 4 | 3 | 5 | 4 | 0 | 4 |  |  |  |  | 2 | 2 |  | 1 |
| MWH06-10364 |  | Generator & Utility Power Pull | 3d | 2021-02-24 A | 2021-02-27 A | MWH06-9934, MWH06.C1.C4370, MWH06.C1.C4090, MWH06.C1.C4280, MWH06.D6.C1.C4150 | 100% | 2021-03-01 | 2021-03-03 |  | VECA Electric [320 h] | 1042 | 2 | 1 | 1C | 4 | 3 | 6 | 11 | 0 | 4 |  |  |  |  | 2 |  |  | 1 |
| MWH06.C1.C4440 |  | Generator & Utility Power Test-Term | 3d | 2021-03-01 A | 2021-03-03 A | MWH06.C1.C4090, MWH06.C1.C4280, MWH06.C1.C4370, MWH06.D6.C1.C4150, MWH06-9934, MWH06-10364 | 100% | 2021-03-15 | 2021-03-17 |  | VECA Electric | 1042 | 2 | 1 | 1C | 4 | 3 | 6 | 11 | 0 | 4 |  |  |  |  | 2 |  |  | 1 |
| MWH06.C1.C4410 |  | Electrical Feeders to Mechanical Equipment Pull-Test-Term | 20d | 2021-03-24 A | 2021-04-13 A | MWH06.C1.C4120, MWH06.C1.C4090, MWH06.C1.C4280, MWH06.C1.C4340, MWH06.D6.C1.C4140, MWH06-9917, MWH06-9934, MWH06.C1.C4440 SS+8d, MWH06-10166, MWH06-10180 | 100% | 2021-04-07 | 2021-04-30 |  | VECA Electric [1080 h] | 1044 | 2 | 1 | 1C | 4 | 3 | 6 | 11 | 0 | 4 |  |  |  | 1 |  | 2 |  | 1 |
|  | 2 | **Mechanical** |  | 2020-09-14 | 2021-02-16 |  |  |  |  |  |  |  |  |  |  |  |  |  |  |  |  |  |  |  |  |  |  |  |  |
| MWH06.C1.C4030 |  | Mechanical/Plumbing Underground Rough-In | 12d | 2020-09-14 A | 2020-09-22 A | MWH06.C1.C4000 SS+6d, MWH06-9716, MWH06-9717, MWH06-9718, MWH06-9719, MWH06-9720, MWH06-9721, MWH06-9722 | 100% | 2020-09-14 | 2020-09-26 |  | TCM Mechanical [720 h] | 1050 | 1 | 1 | 1C | 4 | 3 |  |  |  | 51 |  |  |  |  |  |  |  |  |
| MWH06.C1.C4060 |  | Exterior Equipment Pads - Mechanical | 12d | 2020-09-22 A | 2020-10-21 A | MWH06.C1.C4050 SS+6d, MWH06.C1.C4030, MWH06-9716, MWH06-9717, MWH06-9718, MWH06-9719, MWH06-9720, MWH06-9721, MWH06-9722 | 100% | 2020-09-28 | 2020-10-12 |  | OLSON [1200 h]; VECA Electric [240 h] | 1049 | 2 | 1 | 1C | 4 | 3 |  |  |  |  | CONC |  |  |  |  |  |  |  |
| MWH06.C1.C4080 |  | Steel Supports for Exterior Mechanical Equipment (Fluid Cooler Steel & Pipe Steel Supports) | 4d | 2020-11-09 A | 2020-11-12 A | MWH06.C1.C4060 | 100% | 2020-11-30 | 2020-12-03 |  | Steel [160 h] | 421 | 3 | 1 | 1C | 4 | 3 |  |  |  | 3 |  |  |  |  |  |  |  |  |
| MWH06.C1.C4120 |  | Set Exterior Mechanical OFCI Equipment (FC) | 12d | 2020-12-07 A | 2020-12-09 A | MWH06.C1.C4080, MWH06.C1.E1240, MWH06.C1.E1250 | 100% | 2021-01-02 | 2021-01-15 |  | TCM Mechanical [720 h] | 1045 | 3 | 1 | 1C | 4 | 3 | 5 | 4 |  | 51 |  |  |  |  |  |  |  |  |
| MWH06.C1.C4121 |  | Set Exterior Water Treatment equipment | 2d | 2020-12-07 A | 2020-12-09 A | MWH06.D5.S1000, MWH06.D5.S1030, MWH06.C1.C4060 | 100% | 2021-01-02 | 2021-01-04 |  | TCM Mechanical [120 h] |  | 2 | 1 |  | 4 |  | 5 | 4 |  |  |  |  |  |  |  |  |  |  |
| MWH06.C1.C4135 |  | Set Gen Stack / Exhaust duct | 3d | 2021-01-22 A | 2021-01-22 A | MWH06.C1.C4090, MWH06.C1.C4120, MWH06.C1.C2135 | 100% | 2021-02-01 | 2021-02-03 |  | TCM Mechanical [60 h]; Steel [120 h] |  | 4 | 1 |  | 4 | 3 | 5 | 4 |  | 51 |  |  |  |  |  |  |  |  |
| MWH06.C1.C4150 |  | Mechanical Equipment Piping Connections | 6d | 2021-02-04 A | 2021-02-16 A | MWH06.C1.C4120 SS+5d, MWH06.C1.C4121, MWH06.C1.C4121 FF, MWH06.C1.C1130 | 100% | 2021-03-01 | 2021-03-06 | start on or after 2021-01-13 | TCM Mechanical [720 h] | 1051 | 2 | 1 | 1C | 4 | 3 | 3 | 4 |  | 51 |  |  |  |  |  |  |  |  |

Notes:
- MWH06.C1.C4040: VECA Update Notes: Not fully anchored but cable pulling can start
- MWH06-10364: VECA Update Notes: Incentive is on the start and finish of the last Cell in a COLO
- MWH06.C1.C4440: VECA Update Notes: Incentive is on the start and finish of the last Cell in a COLO

| ID | WBS | Activity | Duration | Start | Finish | Predecessors | Complete | Planned start | Planned finish | Constraint | Resources | MSP Activity ID | VECA % Complete | HRA - Safety Level | COLO | TRADE | MSFT-Funding Releases | CELL | WBS | HRA - Required Permit- Priority-1 | HRA - Required Permit- Priority-2 | VECA- Changed |
| --- | --- | --- | --- | --- | --- | --- | --- | --- | --- | --- | --- | --- | --- | --- | --- | --- | --- | --- | --- | --- | --- | --- |
|  | 3 | **Plumbing** |  |  |  |  |  |  |  |  |  |  |  |  |  |  |  |  |  |  |  |  |
|  | 4 | **Special Systems** |  | 2021-03-01 | 2021-05-07 |  |  |  |  |  |  |  |  |  |  |  |  |  |  |  |  |  |
| MWH06.C1.C4450 |  | Controls Installation | 16d | 2021-03-01 A | 2021-05-07 A | MWH06.C1.C4090, MWH06.C1.C4120, MWH06.C1.C4170, MWH06.D6.C1.C4160 FF, MWH06-10267 FF+4d | 100% | 2021-04-15 | 2021-05-04 |  | VECA Electric [640 h] | 1055 | 0 | 1 | 1 | 4 | 1C | 4 | 3 | 6 | 3 |  |
| MWH06.C1.C4170 |  | Fire Alarm Installation | 12d | 2021-04-01 A | 2021-04-16 A | MWH06.C1.C4120, MWH06.C1.C4090, MWH06.C1.C4150, MWH06.D3.C1.C4030 | 100% | 2021-04-30 | 2021-05-14 |  | VECA Electric [240 h] | 1054 |  | 1 | 1 |  | 1C | 4 | 3 | 6 | 3 |  |
|  | 5 | **Mechanical Corridor Cell 1** |  | 2020-11-26 | 2021-06-26 |  |  |  |  |  |  |  |  |  |  |  |  |  |  |  |  |  |
|  | 1 | **Electrical** |  | 2020-12-03 | 2021-06-07 |  |  |  |  |  |  |  |  |  |  |  |  |  |  |  |  |  |
| MWH06.C1.C1220 |  | VFD'S Installation & wirepull | 12d | 2020-12-03 A | 2021-05-03 A | MWH06.C1.C1170, MWH06.C1.C1230, MWH06-9915 | 100% | 2021-01-02 | 2021-01-15 |  | VECA Electric [240 h] | 1058 | 0 | 1 | 1 | 4 | 1C | 1 | 4 | 3 | 4 |  |
| MWH06.C1.C1470 |  | Ligthing Installation | 12d | 2021-05-04 A | 2021-06-07 A | MWH06.C1.C1220, MWH06.C1.C1310, MWH06-10531, MWH06-10530 | 100% | 2021-06-01 | 2021-06-15 | start on or after 2021-05-03 | VECA Electric [480 h] | 1059 | 0 | 1 | 1 | 4 | 1C | 1 | 4 | 3 | 4 | 1 |
|  | 2 | **Mechanical** |  | 2020-11-26 | 2021-02-20 |  |  |  |  |  |  |  |  |  |  |  |  |  |  |  |  |  |
| MWH06.C1.C1230 |  | AHU/DOAS Equipment Setting | 5d | 2020-11-26 A | 2020-12-04 A | MWH06.C1.C1170, MWH06.C1.E1280, MWH06.C1.E1300, MWH06.C1.C1140 SS+3d | 100% | 2021-01-02 | 2021-01-07 |  | TCM Mechanical [480 h] | 1062 |  | 3 | 1 | 51 | 1C | 1 | 4 |  |  |  |
| MWH06.C1.C1290 |  | Hydronic Piping Installation | 12d | 2021-02-19 A | 2021-02-20 A | MWH06.C1.C1230 | 100% | 2021-03-01 | 2021-03-13 |  | TCM Mechanical [480 h] | 88 |  | 3 | 1 | 51 | 1C | 1 | 4 | 3 | 4 |  |
|  | 3 | **Plumbing** |  | 2021-06-21 | 2021-06-26 |  |  |  |  |  |  |  |  |  |  |  |  |  |  |  |  |  |
| MWH06.C1.C1370 |  | Floor Drain System Installation | 12d | 2021-06-21 A | 2021-06-26 A | MWH06.C1.C1120, MWH06.C1.C1310, MWH06.C1.C1230, MWH06.C1.C1470, MWH06-10530 | 100% | 2021-06-30 | 2021-07-15 |  |  | 1064 |  | 1 | 1 |  | 1C | 1 | 4 | 6 | 3 |  |
|  | 4 | **Special Systems** |  | 2021-02-08 | 2021-05-26 |  |  |  |  |  |  |  |  |  |  |  |  |  |  |  |  |  |
| MWH06.C1.C1180 |  | Fire Riser Installation | 12d | 2021-02-08 A | 2021-02-20 A | MWH06.C1.C1120, MWH06.C1.C1230 | 100% | 2021-03-01 | 2021-03-13 |  |  | 1068 |  | 3 | 1 |  | 1C | 1 | 4 | 6 | 3 |  |
| MWH06.C1.C1320 |  | Controls Installation | 18d | 2021-03-10 A | 2021-05-26 A | MWH06.C1.C1220 FF, MWH06-10267 FF+4d, MWH06-10475, MWH06-10531, MWH06-10530 | 100% | 2021-03-26 | 2021-04-16 |  | VECA Electric [720 h] | 81 | 15.362050013740051 | 1 | 1 | 4 | 1C | 1 | 4 | 6 | 3 |  |
| MWH06.C1.C1190 |  | Fire Alarm System | 12d | 2021-04-01 A | 2021-04-16 A | MWH06.C1.C1180 SS, MWH06.C1.C1230 | 100% | 2021-04-30 | 2021-05-14 |  | VECA Electric [240 h] | 1067 |  | 1 | 1 |  | 1C | 1 | 4 | 6 | 3 |  |
|  | 6 | **Mechanical Corridor Cell 3** |  | 2020-12-07 | 2021-06-26 |  |  |  |  |  |  |  |  |  |  |  |  |  |  |  |  |  |
|  | 1 | **Electrical** |  | 2021-04-12 | 2021-06-15 |  |  |  |  |  |  |  |  |  |  |  |  |  |  |  |  |  |
| MWH06.C1.C3280 |  | VFD'S Installation & Wiring | 12d | 2021-04-12 A | 2021-04-24 A | MWH06.C1.C3200, MWH06.C1.C3290 | 100% | 2021-04-26 | 2021-05-10 |  | VECA Electric [240 h] | 1071 | 0 | 1 | 1 | 4 | 1C | 3 | 4 | 3 | 4 |  |
| MWH06.C1.C3420 |  | Ligthing Installation | 12d | 2021-05-04 A | 2021-06-15 A | MWH06.C1.C3280, MWH06.C1.C3370, MWH06.C1.C1470 SS, MWH06-10531, MWH06-10530 | 100% | 2021-06-01 | 2021-06-15 |  | VECA Electric [480 h] | 1060 | 0 | 1 | 1 | 4 | 1C | 3 | 4 | 3 | 4 | 1 |
|  | 2 | **Mechanical** |  | 2020-12-07 | 2021-02-23 |  |  |  |  |  |  |  |  |  |  |  |  |  |  |  |  |  |
| MWH06.C1.C3290 |  | AHU/DOAS Equipment Setting | 5d | 2020-12-07 A | 2020-12-17 A | MWH06.C1.C3200, MWH06.C1.E1390, MWH06.C1.E1410 | 100% | 2021-01-02 | 2021-01-07 |  | TCM Mechanical [480 h] | 1073 |  | 3 | 1 | 51 | 1C | 3 | 4 | 4 | 11 |  |
| MWH06.C1.C3340 |  | Hydronic Piping Installation | 12d | 2021-02-22 A | 2021-02-23 A | MWH06.C1.C3290 | 100% | 2021-03-01 | 2021-03-13 |  | TCM Mechanical [480 h] | 83 |  | 3 | 1 | 51 | 1C | 3 | 4 | 3 | 4 |  |

Notes:
- MWH06.C1.C1220: VECA Update Notes: No VFDs yet supplied by others, received VFDs last week and pumps are set this work to be coordinated and started
- MWH06.C1.C1320: VECA Update Notes: Rough in started, (separate schedule item) we are waiting for devices that are supplied by others, we were able to track down some panel cans to keep rough in moving
- MWH06.C1.C3280: VECA Update Notes: No VFDs yet supplied by others

| ID | WBS | Activity | Duration | Start | Finish | Predecessors | Complete | Planned start | Planned finish | Resources | MSP Activity ID | HRA - Safety Level | COLO | MSFT-Funding Releases | CELL | WBS | HRA - Required Permit- Priority-1 | HRA - Required Permit- Priority-2 | VECA % Complete | TRADE | VECA- Changed |
| --- | --- | --- | --- | --- | --- | --- | --- | --- | --- | --- | --- | --- | --- | --- | --- | --- | --- | --- | --- | --- | --- |
|  | 3 | **Plumbing** |  | 2021-06-21 | 2021-06-26 |  |  |  |  |  |  |  |  |  |  |  |  |  |  |  |  |
| MWH06.C1.C3430 |  | Floor Drain System Installation | 12d | 2021-06-21 A | 2021-06-26 A | MWH06.C1.C3110, MWH06.C1.C3370, MWH06.C1.C3290, MWH06.C1.Cx3030, MWH06-10530 | 100% | 2021-09-22 | 2021-10-06 |  | 1075 | 1 | 1 | 1C | 3 | 4 | 6 | 3 |  |  |  |
|  | 4 | **Special Systems** |  | 2021-03-01 | 2021-05-26 |  |  |  |  |  |  |  |  |  |  |  |  |  |  |  |  |
| MWH06.C1.C3230 |  | Controls Installation | 18d | 2021-03-01 A | 2021-05-26 A | MWH06.C1.C3170, MWH06-10267 FF+8d, MWH06-10475, MWH06-10531, MWH06-10530 | 100% | 2021-04-15 | 2021-05-06 | VECA Electric [720 h] | 1078 | 1 | 1 | 1C | 3 | 4 | 6 | 3 | 10.546040359504836 | 4 |  |
| MWH06.C1.C3170 |  | Fire Alarm System | 12d | 2021-04-01 A | 2021-04-16 A | MWH06.C1.C1190, MWH06.C1.C3290 | 100% | 2021-05-15 | 2021-05-29 | VECA Electric [240 h] | 1079 | 1 | 1 | 1C | 3 | 4 | 6 | 3 |  |  |  |
|  | 7 | **Mechanical Corridor Cell 2** |  | 2020-11-23 | 2021-06-26 |  |  |  |  |  |  |  |  |  |  |  |  |  |  |  |  |
|  | 1 | **Electrical** |  | 2020-12-28 | 2021-06-21 |  |  |  |  |  |  |  |  |  |  |  |  |  |  |  |  |
| MWH06.C1.C2200 |  | VFD'S Installation & Wiring | 12d | 2020-12-28 A | 2021-05-12 A | MWH06.C1.C2160, MWH06.C1.C2210, MWH06-9915 | 100% | 2021-01-02 | 2021-01-15 | VECA Electric [240 h] | 1083 | 1 | 1 | 1C | 2 | 4 | 3 | 4 | 0 | 4 |  |
| MWH06.C1.C2470 |  | Ligthing Installation | 12d | 2021-05-24 A | 2021-06-21 A | MWH06.C1.C3420, MWH06.C1.C2200, MWH06.C1.C2290, MWH06.C1.C1470, MWH06-10531, MWH06-10530 | 100% | 2021-06-16 | 2021-06-29 | VECA Electric [480 h] | 1084 | 1 | 1 | 1C | 2 | 4 | 3 | 4 | 0 | 4 | 1 |
|  | 2 | **Mechanical** |  | 2020-11-23 | 2021-02-20 |  |  |  |  |  |  |  |  |  |  |  |  |  |  |  |  |
| MWH06.C1.C2210 |  | AHU/DOAS Equipment Setting | 5d | 2020-11-23 A | 2020-12-04 A | MWH06.C1.C2160, MWH06.C1.E1290, MWH06.C1.E1310 | 100% | 2021-01-02 | 2021-01-07 | TCM Mechanical [480 h] | 1086 | 3 | 1 | 1C | 2 | 4 |  |  |  | 51 |  |
| MWH06.C1.C2260 |  | Hydronic Piping Installation | 12d | 2021-02-19 A | 2021-02-20 A | MWH06.C1.C2210 | 100% | 2021-03-01 | 2021-03-13 | TCM Mechanical [480 h] | 86 | 3 | 1 | 1C | 2 | 4 | 3 | 4 |  | 51 |  |
|  | 3 | **Plumbing** |  | 2021-06-21 | 2021-06-26 |  |  |  |  |  |  |  |  |  |  |  |  |  |  |  |  |
| MWH06.C1.C2350 |  | Floor Drain System Installation | 12d | 2021-06-21 A | 2021-06-26 A | MWH06.C1.C2110, MWH06.C1.C2290, MWH06.C1.C2210, MWH06.C1.Cx3030, MWH06-10530 | 100% | 2021-09-22 | 2021-10-06 |  | 1088 | 1 | 1 | 1C | 2 | 4 | 6 | 3 |  |  |  |
|  | 4 | **Special Systems** |  | 2021-03-01 | 2021-05-26 |  |  |  |  |  |  |  |  |  |  |  |  |  |  |  |  |
| MWH06.C1.C2300 |  | Controls Installation | 18d | 2021-03-01 A | 2021-05-26 A | MWH06.C1.C2200, MWH06-10267 FF+9d, MWH06-10475, MWH06-10531, MWH06-10530 | 100% | 2021-04-13 | 2021-05-04 | VECA Electric [720 h] | 1091 | 1 | 1 | 1C | 2 | 4 | 6 | 3 | 10.231984205330704 | 4 |  |
| MWH06.C1.C2220 |  | Fire Alarm System | 12d | 2021-04-01 A | 2021-04-16 A | MWH06.C1.C2210 | 100% | 2021-04-30 | 2021-05-14 | VECA Electric [240 h] | 1092 | 1 | 1 | 1C | 2 | 4 | 6 | 3 |  |  |  |
|  | 8 | **Mechanical Corridor Cell 4** |  | 2020-12-07 | 2021-07-29 |  |  |  |  |  |  |  |  |  |  |  |  |  |  |  |  |
|  | 1 | **Electrical** |  | 2021-04-12 | 2021-07-29 |  |  |  |  |  |  |  |  |  |  |  |  |  |  |  |  |
| MWH06.C1.C4240 |  | VFD'S Installation & Wiring | 12d | 2021-04-12 A | 2021-04-24 A | MWH06.C1.C4190, MWH06.C1.C4250 | 100% | 2021-04-26 | 2021-05-10 | VECA Electric [240 h] | 1096 | 1 | 1 | 1C | 4 | 4 | 3 | 4 | 0 | 4 |  |
| MWH06.C1.C4480 |  | Ligthing Installation | 12d | 2021-05-24 A | 2021-07-29 A | MWH06.C1.C2470 SS, MWH06.C1.C4240, MWH06.C1.C4350, MWH06-10531, MWH06-10530 | 100% | 2021-06-16 | 2021-06-29 | VECA Electric [480 h] | 1097 | 1 | 1 | 1C | 4 | 4 | 3 | 4 | 0 | 4 | 1 |
|  | 2 | **Mechanical** |  | 2020-12-07 | 2021-02-23 |  |  |  |  |  |  |  |  |  |  |  |  |  |  |  |  |
| MWH06.C1.C4250 |  | AHU/DOAS Equipment Setting | 5d | 2020-12-07 A | 2020-12-17 A | MWH06.C1.C4190, MWH06.C1.E1400, MWH06.C1.E1420 | 100% | 2021-01-02 | 2021-01-07 | TCM Mechanical [480 h] | 1099 | 3 | 1 | 1C | 4 | 4 |  |  |  | 51 |  |
| MWH06.C1.C4320 |  | Hydronic Piping Installation | 12d | 2021-02-22 A | 2021-02-23 A | MWH06.C1.C4250 | 100% | 2021-03-01 | 2021-03-13 | TCM Mechanical [480 h] | 80 | 3 | 1 | 1C | 4 | 4 | 3 | 4 |  | 51 |  |

Notes:
- MWH06.C1.C2200: VECA Update Notes: No VFDs yet supplied by others, received VFDs last week and pumps are set this work to be coordinated and started
- MWH06.C1.C4240: VECA Update Notes: No VFDs yet supplied by others

| ID | WBS | Activity | Type | Duration | Start | Finish | Predecessors | Complete | Planned start | Planned finish | Constraint | Resources | MSP Activity ID | HRA - Safety Level | COLO | MSFT-Funding Releases | CELL | WBS | HRA - Required Permit- Priority-1 | HRA - Required Permit- Priority-2 | VECA % Complete | TRADE | Critical Path-1 | HOT ITEMS | MWH06- TRADES | CRITICAL PATH-3 | Critical Path mer to COLO |
| --- | --- | --- | --- | --- | --- | --- | --- | --- | --- | --- | --- | --- | --- | --- | --- | --- | --- | --- | --- | --- | --- | --- | --- | --- | --- | --- | --- |
|  | 3 | **Plumbing** |  |  | 2021-06-21 | 2021-06-26 |  |  |  |  |  |  |  |  |  |  |  |  |  |  |  |  |  |  |  |  |  |
| MWH06.C1.C4420 |  | Floor Drain System Installation |  | 12d | 2021-06-21 A | 2021-06-26 A | MWH06.C1.C4110, MWH06.C1.C4350, MWH06.C1.C4250, MWH06.C1.Cx3030, MWH06-10530 | 100% | 2021-09-22 | 2021-10-06 |  |  | 100 | 1 | 1 | 1C | 4 | 4 | 6 | 3 |  |  |  |  |  |  |  |
|  | 4 | **Special Systems** |  |  | 2021-03-01 | 2021-07-29 |  |  |  |  |  |  |  |  |  |  |  |  |  |  |  |  |  |  |  |  |  |
| MWH06.C1.C4290 |  | Controls Installation |  | 18d | 2021-03-01 A | 2021-05-07 A | MWH06-10267 FF+8d | 100% | 2021-04-06 | 2021-04-27 |  | VECA Electric [720 h] | 1102 | 1 | 1 | 1C | 4 | 4 | 6 | 3 | 12.213875386654887 | 4 | 1 |  |  |  |  |
| MWH06.C1.C4200 |  | Fire Alarm System |  | 12d | 2021-04-01 A | 2021-04-16 A | MWH06.C1.C2220, MWH06.C1.C4250 | 100% | 2021-05-15 | 2021-05-29 |  | VECA Electric [240 h] | 1103 | 1 | 1 | 1C | 4 | 4 | 6 | 3 |  |  | 1 |  |  |  |  |
| MWH06.C1.C4490 |  | Mechanical Corridor complete | milestone | 0d | 2021-07-29 A | 2021-07-29 A | MWH06.C1.C4420, MWH06.C1.C2350, MWH06.C1.C3430, MWH06.C1.C1370, MWH06.C1.C1470, MWH06.C1.C3420, MWH06.C1.C2470, MWH06.C1.C4480, MWH06.C1.C4290, MWH06-10530 | 100% | 2021-09-03 | 2021-09-03 |  |  | 16 |  | 1 |  | 4 | 4 |  |  |  |  |  |  |  |  |  |
|  | 9 | **Data Hall Cell 1** |  |  | 2020-12-19 | 2021-06-30 |  |  |  |  |  |  |  |  |  |  |  |  |  |  |  |  |  |  |  |  |  |
|  | 1 | **Electrical** |  |  | 2020-12-19 | 2021-04-29 |  |  |  |  |  |  |  |  |  |  |  |  |  |  |  |  |  |  |  |  |  |
| MWH06.C1.C1150 |  | HAC Installation |  | 4d | 2020-12-19 A | 2020-12-22 A | MWH06.C1.C1140, MWH06.C1.C1100 SS+2d | 100% | 2021-01-02 | 2021-01-06 |  | TCM Mechanical [480 h] | 1109 | 4 | 1 | 1C | 1 | 5 | 4 | 11 |  | 51 |  | 4 | 26 | CP-2 |  |
| MWH06.C1.C1200 |  | Cable Tray Installation |  | 12d | 2020-12-28 A | 2021-01-18 A | MWH06.C1.C1150 SS, MWH06-2105, MWH06-2106, MWH06-9915 | 100% | 2021-01-02 | 2021-01-15 |  | VECA Electric [1440 h] | 1108 | 2 | 1 | 1C | 1 | 5 | 3 | 4 | -0.16587458792074045 | 4 |  |  |  | CP-2 |  |
| MWH06.C1.C1270 |  | PDU's Installation |  | 3d | 2021-02-04 A | 2021-02-06 A | MWH06.C1.C1200, MWH06.C1.C1260, MWH06.C1.C1140, MWH06.C1.E1340, MWH06.C1.E1350, MWH06-10156 | 100% | 2021-03-01 | 2021-03-03 |  | VECA Electric [180 h] | 1107 | 3 | 1 | 1C | 1 | 5 | 11 | 11 | 0 | 4 |  | 4 | 26 | CP-2 |  |
| MWH06.C1.C1260 |  | Power Bus Installation |  | 10d | 2021-02-11 A | 2021-02-23 A | MWH06.C1.C1200 FS-1d, MWH06-10157 | 100% | 2021-03-01 | 2021-03-11 |  | VECA Electric [1200 h] | 469 | 2 | 1 | 1C | 1 | 5 | 4 | 11 | 0 | 4 |  |  |  | CP-2 |  |
| MWH06.C1.C1460 |  | Pull/term/Test PDU to Power bus |  | 20d | 2021-03-18 A | 2021-04-17 A | MWH06-10383, MWH06.C1.C1270, MWH06.C1.C1260 | 100% | 2021-03-01 | 2021-03-24 |  | VECA Electric [1440 h] | 92 | 2 | 1 | 1C | 1 | 3 | 4 | 11 | 0 | 4 |  |  | 26 |  | 1 |
| MWH06.C1.C1400 |  | Pull / Term / Test Conductors ( MER to PDU) |  | 21d | 2021-03-26 A | 2021-04-29 A | MWH06-10470, MWH06-10432 FF+12d, MWH06-10383, MWH06.C1.C1270 FF+8d, MWH06.D6.C1.C1130, MWH06.D6.C1.C1140, MWH06-9930, MWH06.C1.C1420, MWH06.D6.C1.C1170, MWH06.C1.C1410 SS+8d, MWH06-10151, MWH06-10155 | 100% | 2021-04-05 | 2021-04-29 |  | VECA Electric [1680 h] | 85 | 2 | 1 | 1C | 1 | 5 | 6 | 4 | 0 | 4 |  |  | MER | CP-3 |  |
| MWH06.C1.C1450 |  | Light Fixtures Installation |  | 6d | 2021-04-26 A | 2021-04-28 A | MWH06.C1.C1400, MWH06.C1.C1270 | 100% | 2021-05-05 | 2021-05-11 | start on or after 2021-05-05 | VECA Electric [240 h] | 99 | 2 | 1 | 1C | 1 | 5 | 3 | 4 | -3.7828998117805934E-2 | 4 |  |  |  |  |  |
|  | 2 | **Fiber** |  |  | 2021-03-01 | 2021-06-30 |  |  |  |  |  |  |  |  |  |  |  |  |  |  |  |  |  |  |  |  |  |
| MWH06.C1.C1240 |  | IDF Backbone Install |  | 15d | 2021-03-01 A | 2021-03-17 A | MWH06.C1.C1200 SS+6d, MWH06-9904, MWH06-10157, MWH06.C1.C1260 SS+5d | 100% | 2021-03-22 | 2021-04-07 |  | LINX [1440 h] | 1111 | 1 | 1 | 1C | 1 | 5 | 4 | 11 |  | 7 |  |  | MER | CP-3 |  |
| MWH06.C1.C1330 |  | EPMS Pull Wire / Term / Test |  | 12d | 2021-03-11 A | 2021-05-03 A | MWH06.C1.C1200, MWH06-10145, MWH06.D6.C1.C1140 | 100% | 2021-04-01 | 2021-04-15 |  | LINX [1440 h] | 87 | 1 | 1 | 1C | 1 | 5 | 6 | 7 |  | 7 |  |  | MER | CP-3 |  |
| MWH06.C1.C1390 |  | BMS Pull Wire / Term / Test |  | 12d | 2021-03-11 A | 2021-05-03 A | MWH06.C1.C1330 SS, MWH06-10145, MWH06.D6.C1.C1140, MWH06-10267 FF | 100% | 2021-04-01 | 2021-04-15 |  | LINX [1440 h] | 1112 | 1 | 1 | 1C | 1 | 5 | 6 | 7 |  | 7 |  |  | MER | CP-3 |  |
| MWH06.C1.C1430 |  | Install/Dress/Test Production Fiber (Includes MOR rack set & Fiber runner) |  | 20d | 2021-04-30 A | 2021-06-30 A | MWH06.C1.C1390 SS+6d, MWH06.C1.C1330 SS+6d, MWH06.C1.C1240, MWH06-10530 | 100% | 2021-05-17 | 2021-06-10 |  | LINX [1440 h] | 1113 | 1 | 1 | 1C | 1 | 5 | 7 | 4 |  | 7 |  |  | MER | CP-3 |  |
|  | 3 | **Special Systems** |  |  | 2021-03-08 | 2021-05-21 |  |  |  |  |  |  |  |  |  |  |  |  |  |  |  |  |  |  |  |  |  |
| MWH06.C1.C1340 |  | Controls Installation |  | 8d | 2021-03-08 A | 2021-05-07 A | MWH06.C1.C1200, MWH06-10267 FF+6d | 100% | 2021-03-26 | 2021-04-03 |  | VECA Electric [720 h] | 82 | 1 | 1 | 1C | 1 | 5 | 6 | 3 | 0 | 4 |  |  | MER | CP-3 |  |
| MWH06.C1.C1350 |  | Fire Alarm System |  | 10d | 2021-04-01 A | 2021-04-14 A |  | 100% | 2021-04-30 | 2021-05-12 |  | VECA Electric [600 h] | 8 | 1 | 1 | 1C | 1 | 5 | 6 | 3 |  |  |  |  |  |  |  |
| MWH06-10148 |  | Security Devices & Trim |  | 18d | 2021-04-30 A | 2021-05-21 A | MWH06-10145, MWH06.C1.C1200, MWH06-10530 | 100% | 2021-05-17 | 2021-06-08 |  |  |  |  |  |  |  |  |  |  |  |  |  |  |  |  |  |

Notes:
- MWH06.C1.C4290: VECA Update Notes: Rough in started, (separate schedule item) we are waiting for devices that are supplied by others, we were able to track down some panel cans to keep rough in moving
- MWH06.C1.C1200: VECA Update Notes: HACS rolled in on 12/12/20 this is day 1 of HAC sequence, not all ceiling tiles tray pathways installed, Vesda device tiles not installed, due to the predecessors incomplete we are unable to start tray

| ID | WBS | Activity | Duration | Start | Finish | Predecessors | Complete | Planned start | Planned finish | Constraint | Resources | MSP Activity ID | HRA - Safety Level | COLO | TRADE | MSFT-Funding Releases | CELL | WBS | MWH06- TRADES | HRA - Required Permit- Priority-1 | HRA - Required Permit- Priority-2 | VECA % Complete | Critical Path mer to COLO | Critical Path |
| --- | --- | --- | --- | --- | --- | --- | --- | --- | --- | --- | --- | --- | --- | --- | --- | --- | --- | --- | --- | --- | --- | --- | --- | --- |
|  | 10 | **Data Hall Cell 3** |  | 2021-01-04 | 2021-06-30 |  |  |  |  |  |  |  |  |  |  |  |  |  |  |  |  |  |  |  |
|  | 1 | **Electrical** |  | 2021-01-04 | 2021-05-14 |  |  |  |  |  |  |  |  |  |  |  |  |  |  |  |  |  |  |  |
| MWH06.C1.C3140 |  | HAC Installation | 4d | 2021-01-04 A | 2021-01-07 A | MWH06.C1.C3120, MWH06.C1.C3090, MWH06.C1.C2150 | 100% |  |  | start on or after 2021-01-04 | TCM Mechanical [480 h] | 1119 | 4 | 1 | 51 | 1C | 3 | 5 | 26 | 4 | 11 |  |  |  |
| MWH06.C1.C3190 |  | Cable Tray Installation | 13d | 2021-01-19 A | 2021-02-04 A | MWH06.C1.C3140 SS, MWH06-2106, MWH06.C1.C1200 | 100% | 2021-02-01 | 2021-02-16 | start on or after 2021-01-18 | VECA Electric [1440 h] | 1118 | 2 | 1 | 4 | 1C | 3 | 5 |  | 3 | 4 | 0 |  |  |
| MWH06.C1.C3220 |  | Power Bus Installation | 10d | 2021-02-24 A | 2021-03-08 A | MWH06.C1.C3190, MWH06.C1.C1260, MWH06-10158 | 100% | 2021-03-02 | 2021-03-12 |  | VECA Electric [1200 h] | 471 | 2 | 1 | 4 | 1C | 3 | 5 |  | 4 | 11 | 0 |  |  |
| MWH06.C1.C3240 |  | PDU's Installation | 3d | 2021-02-26 A | 2021-03-09 A | MWH06.C1.C3220 SS, MWH06.C1.C3120, MWH06.C1.E1430, MWH06.C1.E1440 | 100% | 2021-03-08 | 2021-03-10 |  | VECA Electric [180 h] | 1117 | 3 | 1 | 4 | 1C | 3 | 5 | 26 | 11 |  | 0 |  |  |
| MWH06.C1.C3470 |  | Pull/term/Test PDU to Power bus | 20d | 2021-03-31 A | 2021-05-04 A | MWH06-10384, MWH06.C1.C3240, MWH06.C1.C3220 | 100% | 2021-04-26 | 2021-05-19 |  | VECA Electric [1440 h] | 1009 | 2 | 1 | 4 | 1C | 3 | 3 | 26 | 4 | 11 | 0 | 1 |  |
| MWH06.C1.C3360 |  | Pull / Term / Test Conductors ( MER to PDU) | 20d | 2021-04-16 A | 2021-05-14 A | MWH06-10434 FF+12d, MWH06-10384, MWH06.C1.C3240 FF+8d, MWH06.C1.C3190, MWH06.D6.C1.C3130, MWH06.D6.C1.C3140, MWH06-9913, MWH06.C1.C3410, MWH06.C1.C3390 SS+8d, MWH06-10164, MWH06-10172, MWH06.D6.C1.C3170, MWH06-10366 | 100% | 2021-04-26 | 2021-05-19 |  | VECA Electric [1680 h] | 1120 | 2 | 1 | 4 | 1C | 3 | 5 | MER | 6 | 4 | 0 |  | (New)-1 |
| MWH06.C1.C3400 |  | Light Fixtures Installation | 6d | 2021-04-26 A | 2021-04-29 A | MWH06.C1.C3360, MWH06.C1.C3240, MWH06.C1.C1450 SS | 100% | 2021-05-12 | 2021-05-18 | start on or after 2021-03-01 | VECA Electric [240 h] | 98 | 2 | 1 | 4 | 1C | 3 | 5 |  | 3 | 4 | -3.7828998117805934E-2 |  |  |
|  | 2 | **Fiber** |  | 2021-03-03 | 2021-06-30 |  |  |  |  |  |  |  |  |  |  |  |  |  |  |  |  |  |  |  |
| MWH06.C1.C3260 |  | IDF Backbone Install | 15d | 2021-03-03 A | 2021-03-19 A | MWH06-10158, MWH06.C1.C3220 SS+5d | 100% | 2021-03-22 | 2021-04-07 | start on or after 2021-01-25 | LINX [1440 h] | 1124 | 1 | 1 | 7 | 1C | 3 | 5 | MER | 4 | 11 |  |  | (New)-1 |
| MWH06.C1.C3330 |  | EPMS Pull Wire / Term / Test | 12d | 2021-03-13 A | 2021-05-03 A | MWH06.C1.C3190, MWH06-10167, MWH06.D6.C1.C3140, MWH06.S.1540 FF | 100% | 2021-04-01 | 2021-04-15 |  | LINX [1440 h] | 1123 | 1 | 1 | 7 | 1C | 3 | 5 | MER | 6 | 7 |  |  | (New)-1 |
| MWH06.C1.C3380 |  | BMS Pull Wire / Term / Test | 12d | 2021-03-13 A | 2021-05-03 A | MWH06.C1.C3190, MWH06.C1.C3330 SS, MWH06-10167, MWH06-10267 FF | 100% | 2021-04-01 | 2021-04-15 |  | LINX [1440 h] | 1125 | 1 | 1 | 7 | 1C | 3 | 5 | MER | 6 | 7 |  |  | (New)-1 |
| MWH06.C1.C3460 |  | Install/Dress/Test Production Fiber (Includes MOR rack set & Fiber runner) | 20d | 2021-05-01 A | 2021-06-30 A | MWH06.C1.C1430, MWH06.C1.C3380, MWH06.C1.C3260, MWH06-10530 | 100% | 2021-07-01 | 2021-07-27 |  | LINX [1440 h] | 1126 | 1 | 1 | 7 | 1C | 3 | 5 | MER |  | 4 |  |  | (New)-1 |
|  | 3 | **Special Systems** |  | 2021-03-01 | 2021-06-15 |  |  |  |  |  |  |  |  |  |  |  |  |  |  |  |  |  |  |  |
| MWH06.C1.C3310 |  | Controls Installation | 8d | 2021-03-01 A | 2021-05-07 A | MWH06.C1.C3190, MWH06-10267 FF+6d | 100% | 2021-04-06 | 2021-04-15 |  | VECA Electric [720 h] | 1121 | 1 | 1 | 4 | 1C | 3 | 5 | MER | 6 | 3 | 0 |  | (New)-1 |
| MWH06.C1.C3320 |  | Fire Alarm System | 10d | 2021-04-01 A | 2021-04-14 A | MWH06.C1.C3380 | 100% | 2021-05-04 | 2021-05-14 |  | VECA Electric [600 h] | 10 | 1 | 1 |  | 1C | 3 | 5 |  | 6 | 3 |  |  |  |
| MWH06-10185 |  | Security Devices & Trim | 18d | 2021-05-24 A | 2021-06-15 A | MWH06-10148, MWH06-10167, MWH06-10531, MWH06-10530 | 100% | 2021-06-07 | 2021-06-28 |  | VECA Electric [360 h] | 10 | 1 | 1 |  | 1C | 3 | 5 |  | 6 | 3 |  |  |  |
|  | 11 | **Data Hall Cell 2** |  | 2020-12-23 | 2021-06-30 |  |  |  |  |  |  |  |  |  |  |  |  |  |  |  |  |  |  |  |
|  | 1 | **Electrical** |  | 2020-12-23 | 2021-05-05 |  |  |  |  |  |  |  |  |  |  |  |  |  |  |  |  |  |  |  |
| MWH06.C1.C2150 |  | HAC Installation | 4d | 2020-12-23 A | 2020-12-31 A | MWH06.C1.C2130, MWH06.C1.C2100, MWH06.C1.C1150, MWH06-9915 | 100% | 2021-01-04 | 2021-01-07 | start on or after 2021-01-04 | TCM Mechanical | 1132 | 4 | 1 | 51 | 1C | 2 | 5 | 26 | 4 | 11 |  |  | Cx |
| MWH06.C1.C2180 |  | Cable Tray Installation | 12d | 2020-12-23 A | 2021-01-18 A | MWH06.C1.C2150 SS, MWH06-2106, MWH06-9915 | 100% | 2021-01-02 | 2021-01-15 |  | VECA Electric [1440 h] | 1131 | 2 | 1 | 4 | 1C | 2 | 5 |  | 3 | 4 | -0.16587458792074045 |  | Cx |
| MWH06.C1.C2250 |  | PDU's Installation | 3d | 2021-02-04 A | 2021-02-06 A | MWH06.C1.C2240, MWH06.C1.C2130, MWH06.C1.E1360, MWH06.C1.E1370 | 100% | 2021-03-01 | 2021-03-03 |  | VECA Electric [180 h] | 1130 | 3 | 1 | 4 | 1C | 2 | 5 | 26 | 11 |  | 0 |  | Cx |
| MWH06.C1.C2240 |  | Power Bus Installation | 10d | 2021-02-11 A | 2021-02-23 A | MWH06.C1.C2180, MWH06-10159 | 100% | 2021-03-01 | 2021-03-11 |  | VECA Electric [1200 h] | 473 | 2 | 1 | 4 | 1C | 2 | 5 |  | 4 | 11 | 0 |  | Cx |
| MWH06.C1.C2460 |  | Pull/term/Test PDU to Power bus | 20d | 2021-03-20 A | 2021-04-17 A | MWH06-10385, MWH06.C1.C2250, MWH06.C1.C2240 | 100% | 2021-03-31 | 2021-04-23 |  | VECA Electric [1440 h] | 1029 | 2 | 1 | 4 | 1C | 2 | 3 | 26 | 4 | 11 | 0 | 1 |  |
| MWH06.C1.C2380 |  | Pull / Term / Test Conductors ( MER to PDU) | 21d | 2021-03-29 A | 2021-05-05 A | MWH06-10470, MWH06-10433 FF+12d, MWH06-10385, MWH06.C1.C2250 FF+8d, MWH06.C1.C2180, MWH06.D6.C1.C2130, MWH06.D6.C1.C2140, MWH06-9916, MWH06.C1.C2420, MWH06-10165, MWH06-10176, MWH06.D6.C1.C2170 | 100% | 2021-04-01 | 2021-04-26 |  | VECA Electric [1680 h] | 1133 | 2 | 1 | 4 | 1C | 2 | 5 | MER | 6 | 4 | 0 |  | Cx |
| MWH06.C1.C2400 |  | Light Fixtures Installation | 6d | 2021-04-26 A | 2021-04-28 A | MWH06.C1.C2380, MWH06.C1.C2250, MWH06.C1.C3400 SS | 100% | 2021-05-11 | 2021-05-17 |  | VECA Electric [240 h] | 102 | 2 | 1 | 4 | 1C | 2 | 5 |  | 3 | 4 | 3.9621710018821941 |  |  |

Notes:
- MWH06.C1.C3190: VECA Update Notes: Tray in 1.3 and 1.4 will start when 1.1 and 1.2 are complete HACs are just rolling into these cells and not complete, the grid ceiling and tile pathways for tray are also not complete
- MWH06.C1.C2180: VECA Update Notes: HACS rolled in on 12/12/20 this is day 1 of HAC sequence, not all ceiling tiles tray pathways installed, Vesda device tiles not installed, due to the predecessors incomplete we are unable to start tray

| ID | WBS | Activity | Type | Duration | Start | Finish | Predecessors | Complete | Planned start | Planned finish | Constraint | Resources | MSP Activity ID | HRA - Safety Level | COLO | Critical Path | TRADE | MSFT-Funding Releases | CELL | WBS | MWH06- TRADES | HRA - Required Permit- Priority-1 | HRA - Required Permit- Priority-2 | VECA % Complete | Critical Path mer to COLO | COLO CRITICAL |
| --- | --- | --- | --- | --- | --- | --- | --- | --- | --- | --- | --- | --- | --- | --- | --- | --- | --- | --- | --- | --- | --- | --- | --- | --- | --- | --- |
|  | 2 | **Fiber** |  |  | 2021-03-01 | 2021-06-30 |  |  |  |  |  |  |  |  |  |  |  |  |  |  |  |  |  |  |  |  |
| MWH06.C1.C2230 |  | IDF Backbone Install |  | 15d | 2021-03-01 A | 2021-03-17 A | MWH06.C1.C2180 SS+6d, MWH06.C1.C1240, MWH06-10159, MWH06.C1.C2240 SS+5d | 100% | 2021-03-22 | 2021-04-07 |  | LINX [1440 h] | 1137 | 1 | 1 | Cx | 7 | 1C | 2 | 5 | MER | 4 | 11 |  |  |  |
| MWH06.C1.C2310 |  | EPMS Pull Wire / Term / Test |  | 12d | 2021-03-15 A | 2021-05-03 A | MWH06.C1.C2180, MWH06-10168, MWH06.D6.C1.C2140 | 100% | 2021-04-01 | 2021-04-15 |  | LINX [1440 h] | 1136 | 1 | 1 | Cx | 7 | 1C | 2 | 5 | MER | 6 | 7 |  |  |  |
| MWH06.C1.C2370 |  | BMS Pull Wire / Term / Test |  | 12d | 2021-03-15 A | 2021-05-03 A | MWH06.C1.C2310 SS, MWH06-10168, MWH06-10267 FF | 100% | 2021-04-01 | 2021-04-15 |  | LINX [1440 h] | 1138 | 1 | 1 | Cx | 7 | 1C | 2 | 5 | MER | 6 | 7 |  |  |  |
| MWH06.C1.C2440 |  | Install/Dress/Test Production Fiber (Includes MOR rack set & Fiber runner) |  | 20d | 2021-05-04 A | 2021-06-30 A | MWH06.C1.C2370, MWH06.C1.C2230, MWH06-10530 | 100% | 2021-05-19 | 2021-06-14 |  | LINX [1440 h] | 1139 | 1 | 1 | Cx | 7 | 1C | 2 | 5 | MER |  | 4 |  |  |  |
|  | 3 | **Special Systems** |  |  | 2021-03-01 | 2021-05-21 |  |  |  |  |  |  |  |  |  |  |  |  |  |  |  |  |  |  |  |  |
| MWH06.C1.C2320 |  | Controls Installation |  | 8d | 2021-03-01 A | 2021-05-07 A | MWH06.C1.C2250, MWH06-10267 FF+6d | 100% | 2021-04-06 | 2021-04-15 |  | VECA Electric [720 h] | 1134 | 1 | 1 | Cx | 4 | 1C | 2 | 5 | MER | 6 | 3 | 0 |  |  |
| MWH06.C1.C2330 |  | Fire Alarm System |  | 10d | 2021-04-01 A | 2021-04-14 A | MWH06.C1.C2380, MWH06.C1.C2250, MWH06.C1.C2250 FF | 100% | 2021-05-06 | 2021-05-17 |  | VECA Electric [600 h] | 12 | 1 | 1 |  |  | 1C | 2 | 5 |  | 6 | 3 |  |  |  |
| MWH06-10186 |  | Security Devices & Trim |  | 18d | 2021-04-30 A | 2021-05-21 A | MWH06-10168, MWH06-10531, MWH06-10530 | 100% | 2021-05-17 | 2021-06-08 |  | VECA Electric [360 h] | 12 | 1 | 1 |  |  | 1C | 2 | 5 |  | 6 | 3 |  |  |  |
|  | 13 | **Data Hall Cell 4** |  |  | 2021-01-04 | 2021-06-30 |  |  |  |  |  |  |  |  |  |  |  |  |  |  |  |  |  |  |  |  |
|  | 1 | **Electrical** |  |  | 2021-01-04 | 2021-05-20 |  |  |  |  |  |  |  |  |  |  |  |  |  |  |  |  |  |  |  |  |
| MWH06.C1.C4140 |  | HAC Installation |  | 4d | 2021-01-04 A | 2021-01-07 A | MWH06.C1.C4130, MWH06.C1.C4100, MWH06.C1.C3140 | 100% | 2021-01-11 | 2021-01-14 |  | TCM Mechanical [480 h] | 1145 | 4 | 1 |  | 51 | 1C | 4 | 5 | 26 | 4 | 11 |  |  |  |
| MWH06.C1.C4180 |  | Cable Tray Installation |  | 12d | 2021-01-20 A | 2021-02-04 A | MWH06.C1.C4140 SS, MWH06-2106 | 100% | 2021-02-01 | 2021-02-15 | start on or after 2021-01-20 | VECA Electric [1440 h] | 1144 | 2 | 1 |  | 4 | 1C | 4 | 5 |  | 3 | 4 | 0 |  |  |
| MWH06.C1.C4210 |  | Power Bus Installation |  | 10d | 2021-02-24 A | 2021-03-10 A | MWH06.C1.C4180, MWH06-10160, MWH06.C1.C2240 | 100% | 2021-03-12 | 2021-03-24 |  | VECA Electric [1200 h] | 475 | 2 | 1 |  | 4 | 1C | 4 | 5 |  | 4 | 11 | 0 |  |  |
| MWH06.C1.C4220 |  | PDU's Installation |  | 3d | 2021-02-26 A | 2021-03-01 A | MWH06.C1.C4210 SS, MWH06.C1.C4130, MWH06.C1.E1450, MWH06.C1.E1460 | 100% | 2021-03-08 | 2021-03-10 |  | VECA Electric [180 h] | 1143 | 3 | 1 |  | 4 | 1C | 4 | 5 | 26 | 11 |  | 0 |  |  |
| MWH06.C1.C4470 |  | Pull/term/Test PDU to Power bus |  | 20d | 2021-04-14 A | 2021-05-04 A | MWH06-10386, MWH06.C1.C4220, MWH06.C1.C4210 | 100% | 2021-05-03 | 2021-05-26 |  | VECA Electric [1440 h] | 1047 | 2 | 1 |  | 4 | 1C | 4 | 3 | 26 | 4 | 11 | 0 | 1 |  |
| MWH06.C1.C4360 |  | Pull / Term / Test Conductors ( MER to PDU) |  | 21d | 2021-04-15 A | 2021-05-20 A | MWH06-10435 FF, MWH06-10386, MWH06.C1.C4220 FF+8d, MWH06.D6.C1.C4130, MWH06.D6.C1.C4140, MWH06-9917, MWH06.C1.C4440, MWH06.C1.C4410 SS+7d, MWH06-10166, MWH06-10180, MWH06.D6.C1.C4170, MWH06-10531, MWH06-10530 | 100% | 2021-05-03 | 2021-05-27 |  | VECA Electric [1680 h] | 1146 | 2 | 1 | (New)-1 | 4 | 1C | 4 | 5 | 26 | 6 | 4 | 0 |  | 1 |
| MWH06.C1.C4390 |  | Light Fixtures Installation |  | 6d | 2021-04-26 A | 2021-04-29 A | MWH06.C1.C4360, MWH06.C1.C4220, MWH06.C1.C2400 SS | 100% | 2021-05-21 | 2021-05-28 |  | VECA Electric [240 h] | 101 | 2 | 1 |  | 4 | 1C | 4 | 5 |  | 3 | 4 | 3.9621710018821941 |  |  |
|  | 2 | **Fiber** |  |  | 2021-02-03 | 2021-06-30 |  |  |  |  |  |  |  |  |  |  |  |  |  |  |  |  |  |  |  |  |
| MWH06.C1.C4260 |  | IDF Backbone Install |  | 15d | 2021-02-03 A | 2021-03-19 A | MWH06.C1.C4180, MWH06.C1.C2230 SS, MWH06-10160, MWH06.C1.C4210 SS+5d | 100% | 2021-03-22 | 2021-04-07 |  | LINX [1440 h] | 1150 | 1 | 1 | Cx | 7 | 1C | 4 | 5 |  | 4 | 11 |  |  |  |
| MWH06.C1.C4330 |  | EPMS Pull Wire / Term / Test |  | 12d | 2021-03-13 A | 2021-05-03 A | MWH06.C1.C4180, MWH06-10169, MWH06.D6.C1.C4140, MWH06.S.1540 FF | 100% | 2021-04-01 | 2021-04-15 |  | LINX [1440 h] | 1149 | 1 | 1 | Cx | 7 | 1C | 4 | 5 |  | 6 | 7 |  |  |  |
| MWH06.C1.C4380 |  | BMS Pull Wire / Term / Test |  | 12d | 2021-03-13 A | 2021-05-03 A | MWH06.C1.C4330 SS, MWH06.C1.C4180, MWH06-10169, MWH06-10267 FF | 100% | 2021-04-01 | 2021-04-15 |  | LINX [1440 h] | 1151 | 1 | 1 | Cx | 7 | 1C | 4 | 5 |  | 6 | 7 |  |  |  |
| MWH06.C1.C4460 |  | Install/Dress/Test Production Fiber (Includes MOR rack set & Fiber runner) |  | 20d | 2021-05-04 A | 2021-06-30 A | MWH06.C1.C4380, MWH06.C1.C4260, MWH06-10530 | 100% | 2021-05-19 | 2021-06-14 |  | LINX [1440 h] | 1152 | 1 | 1 | Cx | 7 | 1C | 4 | 5 |  |  | 4 |  |  |  |
|  | 3 | **Special Systems** |  |  | 2021-01-25 | 2021-06-23 |  |  |  |  |  |  |  |  |  |  |  |  |  |  |  |  |  |  |  |  |
| MWH06.C1.C4300 |  | Controls Installation |  | 8d | 2021-01-25 A | 2021-05-07 A | MWH06.C1.C4220, MWH06-10267 FF+6d | 100% | 2021-04-06 | 2021-04-15 |  | VECA Electric [720 h] | 1147 | 1 | 1 | Cx | 4 | 1C | 4 | 5 |  | 6 | 3 | 0 |  |  |
| MWH06.C1.C4310 |  | Fire Alarm System |  | 10d | 2021-04-01 A | 2021-04-14 A | MWH06.C1.C4360, MWH06.C1.C4220 | 100% | 2021-05-21 | 2021-06-03 |  | VECA Electric [600 h] | 6 | 1 | 1 |  |  | 1C | 4 | 5 |  | 6 | 3 |  |  |  |
| MWH06-10187 |  | Security Devices & Trim |  | 18d | 2021-06-01 A | 2021-06-22 A | MWH06-10186, MWH06-10169, MWH06-10531, MWH06-10530 | 100% | 2021-06-30 | 2021-07-22 |  | VECA Electric [360 h] | 6 | 1 | 1 |  |  | 1C | 4 | 5 |  | 6 | 3 |  |  |  |
| MWH06.C1.C4400 |  | Data Hall complete | milestone | 0d | 2021-06-23 A | 2021-06-23 A | MWH06.C1.C4390, MWH06.C1.C2400, MWH06.C1.C3400, MWH06.C1.C4380, MWH06-10187, MWH06-10530 | 100% | 2021-06-30 | 2021-06-30 |  |  | 1154 |  | 1 |  |  |  | 4 | 5 |  |  |  |  |  |  |

Notes:
- MWH06.C1.C4180: VECA Update Notes: Tray in 1.3 and 1.4 will start when 1.1 and 1.2 are complete HACs are just rolling into these cells and not complete, the grid ceiling and tile pathways for tray are also not complete

| ID | WBS | Activity | Duration | Start | Finish | Predecessors | Complete | Planned start | Planned finish | Constraint | Resources | MSP Activity ID | VECA % Complete | HRA - Safety Level | COLO | TRADE | MSFT-Funding Releases | CELL | WBS | MWH06- TRADES | HRA - Required Permit- Priority-1 | HRA - Required Permit- Priority-2 |
| --- | --- | --- | --- | --- | --- | --- | --- | --- | --- | --- | --- | --- | --- | --- | --- | --- | --- | --- | --- | --- | --- | --- |
|  | 9 | **COLO 2 Fitout** |  | 2020-09-21 | 2021-08-19 |  |  |  |  |  |  |  |  |  |  |  |  |  |  |  |  |  |
|  | 3 | **Interior Buildout** |  | 2020-10-26 | 2021-03-24 |  |  |  |  |  |  |  |  |  |  |  |  |  |  |  |  |  |
|  | 1 | **Cell 1 Datahall** |  | 2020-10-26 | 2020-12-31 |  |  |  |  |  |  |  |  |  |  |  |  |  |  |  |  |  |
|  | 1 | **Partitions** |  | 2020-10-26 | 2020-12-09 |  |  |  |  |  |  |  |  |  |  |  |  |  |  |  |  |  |
| MWH06.C2.C1090 |  | Overhead MEPFP Rough-In | 10d | 2020-10-26 A | 2020-11-14 A | MWH06.C1.C3200, MWH-06-02-SOG-F, MWH-06-02-DRY-F | 100% | 2020-11-02 | 2020-11-12 |  | VECA Electric [400 h] | 1160 | 100 | 2 | 2 | 4 | 2 | 1 | 1 |  |  |  |
| MWH06.C2.C1050 |  | Frame wall & MEPFP In wall roughin | 5d | 2020-11-16 A | 2020-11-19 A | MWH06.C1.C3070, MWH06.C2.CS1090, MWH06-C2.P1500 | 100% | 2020-11-16 | 2020-11-20 | start on or after 2020-11-04 | TCM Mechanical [400 h]; VECA Electric [400 h] | 1161 |  | 2 | 2 | 6 | 2 | 1 | 1 | 23 |  |  |
| MWH06.C2.C1110 |  | Hang drywall / Mud / Tape | 8d | 2020-12-01 A | 2020-12-09 A | MWH06.C2.C1050, MWH06.C2.CS1090, MWH06.C2.C1090 SS+6d | 100% | 2021-01-02 | 2021-01-11 |  | PCI [600 h] | 1159 |  | 2 | 2 | 6 | 2 | 1 | 1 |  | 3 | 4 |
|  | 2 | **Finishes** |  | 2020-12-18 | 2020-12-31 |  |  |  |  |  |  |  |  |  |  |  |  |  |  |  |  |  |
| MWH06.C2.C1140 |  | Datahall Finishes - Ceiling Grid | 8d | 2020-12-18 A | 2020-12-31 A | MWH06.C2.C1110, MWH06.C2.CS1120, MWH06-9915 | 100% | 2021-01-02 | 2021-01-11 |  | PCI [400 h] | 1164 |  | 3 | 2 | 6 | 2 | 1 | 1 |  | 3 | 4 |
|  | 2 | **Cell 3 Datahall** |  | 2020-10-28 | 2021-01-07 |  |  |  |  |  |  |  |  |  |  |  |  |  |  |  |  |  |
|  | 1 | **Partitions** |  | 2020-10-28 | 2021-01-06 |  |  |  |  |  |  |  |  |  |  |  |  |  |  |  |  |  |
| MWH06.C2.C3090 |  | Overhead MEPFP Rough-In | 10d | 2020-10-28 A | 2021-01-06 A | MWH06.C2.C1090 FF, MWH-06-02-SOG-F, MWH-06-02-DRY-F, MWH06-9915 | 100% | 2020-11-06 | 2020-11-18 |  | VECA Electric [400 h] | 355 | 100 | 2 | 2 | 4 | 2 | 3 | 1 |  | 3 | 4 |
| MWH06.C2.C3030 |  | Frame wall & MEPFP In wall roughin | 5d | 2020-11-19 A | 2020-12-09 A | MWH06.C2.C1050 | 100% | 2020-11-23 | 2020-12-01 |  | TCM Mechanical [400 h]; VECA Electric [400 h] | 1162 |  | 2 | 2 | 6 | 2 | 3 | 1 | 23 | 3 | 4 |
| MWH06.C2.C3110 |  | Hang drywall / Mud / Tape | 5d | 2020-12-10 A | 2020-12-31 A | MWH06.C2.C3030, MWH06.C2.CS1090, MWH06.C2.C3090 SS+6d, MWH06.C2.C1110, MWH06-9915 | 100% | 2021-01-06 | 2021-01-11 |  | PCI [600 h] | 1167 |  | 2 | 2 | 6 | 2 | 3 | 1 |  | 3 | 4 |
|  | 2 | **Finishes** |  | 2020-12-31 | 2021-01-07 |  |  |  |  |  |  |  |  |  |  |  |  |  |  |  |  |  |
| MWH06.C2.C3130 |  | Datahall Finishes - Ceiling Grid | 8d | 2020-12-31 A | 2021-01-07 A | MWH06.C2.C3110 SS+4d, MWH06.C2.CS1120 | 100% | 2021-01-02 | 2021-01-11 |  | PCI [400 h] | 1169 |  | 3 | 2 | 6 | 2 | 3 | 1 |  | 3 | 4 |
|  | 3 | **Cell 2 Datahall** |  | 2020-10-26 | 2020-12-31 |  |  |  |  |  |  |  |  |  |  |  |  |  |  |  |  |  |
|  | 1 | **Partitions** |  | 2020-10-26 | 2020-12-09 |  |  |  |  |  |  |  |  |  |  |  |  |  |  |  |  |  |
| MWH06.C2.C2070 |  | Overhead MEPFP Rough-In | 10d | 2020-10-26 A | 2020-11-14 A | MWH06.C1.C4190, MWH06.C1.C4070, MWH-06-02-SOG-F, MWH-06-02-DRY-F | 100% | 2020-11-02 | 2020-11-12 |  | VECA Electric [400 h] | 1173 | 100 | 2 | 2 | 4 | 2 | 2 | 1 |  |  |  |
| MWH06.C2.C2040 |  | Frame wall & MEPFP In wall roughin | 5d | 2020-11-16 A | 2020-11-19 A | MWH06.C1.C4070 | 100% | 2020-11-23 | 2020-12-01 | start on or after 2020-11-04 | TCM Mechanical [400 h]; VECA Electric [400 h] | 1174 |  | 2 | 2 | 6 | 2 | 2 | 1 | 23 |  |  |
| MWH06.C2.C2100 |  | Hang drywall / Mud / Tape | 8d | 2020-12-01 A | 2020-12-09 A | MWH06.C2.C2040, MWH06.C2.CS1090, MWH06.C2.C2070 SS+6d | 100% | 2021-01-02 | 2021-01-11 |  | PCI [600 h] | 1172 |  | 2 | 2 | 6 | 2 | 2 | 1 |  | 3 | 4 |
|  | 2 | **Finishes** |  | 2020-12-18 | 2020-12-31 |  |  |  |  |  |  |  |  |  |  |  |  |  |  |  |  |  |
| MWH06.C2.C2120 |  | Datahall Finishes - Ceiling Grid | 8d | 2020-12-18 A | 2020-12-31 A | MWH06.C2.C2100, MWH06.C2.CS1120, MWH06-9915 | 100% | 2021-01-12 | 2021-01-21 |  | PCI [400 h] | 1177 |  | 3 | 2 | 6 | 2 | 2 | 1 |  | 3 | 4 |
|  | 4 | **Cell 4 Datahall** |  | 2020-10-28 | 2021-01-07 |  |  |  |  |  |  |  |  |  |  |  |  |  |  |  |  |  |
|  | 1 | **Partitions** |  | 2020-10-28 | 2021-01-06 |  |  |  |  |  |  |  |  |  |  |  |  |  |  |  |  |  |
| MWH06.C2.C4070 |  | Overhead MEPFP Rough-In | 10d | 2020-10-28 A | 2021-01-06 A | MWH06.C2.C2070 FF, MWH-06-02-SOG-F, MWH-06-02-DRY-F, MWH06-9915 | 100% | 2020-11-06 | 2020-11-18 |  | VECA Electric [400 h] | 1181 | 100 | 2 | 2 | 4 | 2 | 4 | 1 |  | 3 | 4 |
| MWH06.C2.C4020 |  | Frame wall & MEPFP In wall roughin | 5d | 2020-11-19 A | 2020-12-09 A | MWH06.C2.C3030 FF, MWH06.C2.C2040 SS | 100% | 2020-11-23 | 2020-12-01 |  | TCM Mechanical [400 h]; VECA Electric [400 h] | 1175 |  | 2 | 2 | 6 | 2 | 4 | 1 | 23 | 3 | 4 |
| MWH06.C2.C4090 |  | Hang drywall / Mud / Tape | 5d | 2020-12-10 A | 2020-12-31 A | MWH06.C2.C4020, MWH06.C2.CS1090, MWH06.C2.C4070 SS+6d, MWH06.C2.C2100, MWH06-9915 | 100% | 2021-01-06 | 2021-01-11 |  | PCI [600 h] | 1180 |  | 2 | 2 | 6 | 2 | 4 | 1 |  | 3 | 4 |

| ID | WBS | Activity | Duration | Start | Finish | Predecessors | Complete | Planned start | Planned finish | Resources | MSP Activity ID | HRA - Safety Level | COLO | TRADE | MSFT-Funding Releases | CELL | WBS | HRA - Required Permit- Priority-1 | HRA - Required Permit- Priority-2 | VECA % Complete | MWH06- TRADES | Critical Path-1 |
| --- | --- | --- | --- | --- | --- | --- | --- | --- | --- | --- | --- | --- | --- | --- | --- | --- | --- | --- | --- | --- | --- | --- |
|  | 2 | **Finishes** |  | 2020-12-31 | 2021-01-07 |  |  |  |  |  |  |  |  |  |  |  |  |  |  |  |  |  |
| MWH06.C2.C4110 |  | Datahall Finishes - Ceiling Grid | 8d | 2020-12-31 A | 2021-01-07 A | MWH06.C2.C4090 SS+4d, MWH06.C2.CS1120 | 100% | 2021-01-11 | 2021-01-20 | PCI [400 h] | 1183 | 3 | 2 | 6 | 2 | 4 | 1 | 3 | 4 |  |  |  |
|  | 5 | **Cell 1 Mechanical Corridor** |  | 2020-10-26 | 2021-03-09 |  |  |  |  |  |  |  |  |  |  |  |  |  |  |  |  |  |
|  | 1 | **Partitions** |  | 2020-10-26 | 2021-03-09 |  |  |  |  |  |  |  |  |  |  |  |  |  |  |  |  |  |
| MWH06.C2.C1160 |  | OverHead MEPFP Rough-In | 12d | 2020-10-26 A | 2020-11-19 A | MWH06.C2.CS1090, MWH-06-02-SOG-F, MWH-06-02-DRY-F | 100% | 2020-11-19 | 2020-12-07 | TCM Mechanical [400 h]; VECA Electric [960 h] | 349 | 2 | 2 | 4 | 2 | 1 | 2 |  |  | 0.49999047455754314 | 23 |  |
| MWH06.C2.C1200 |  | Electrical surface mounted Rough-in Above AHU | 5d | 2020-11-16 A | 2020-11-25 A | MWH06.C2.C1100, MWH06.C2.C1160 | 100% | 2020-12-12 | 2020-12-17 | VECA Electric [960 h] | 1187 | 2 | 2 | 4 | 2 | 1 | 2 |  |  | 39.251237623762378 |  |  |
| MWH06.C2.C1100 |  | Frame & Top out | 8d | 2020-11-17 A | 2020-12-17 A | MWH06-9788 FF+5d, MWH06.C2.C1050 SS, MWH06.C2.CS1090 | 100% | 2020-11-23 | 2020-12-04 | PCI [480 h] | 1186 | 2 | 2 | 6 | 2 | 1 | 2 | 3 |  |  |  |  |
| MWH06-9758 |  | Remaining Post MER raceway across Mech chase | 13d | 2021-02-22 A | 2021-03-09 A | MWH06.C2.C1310, MWH06.C2.C1100, MWH06.C2.C1160, MWH06.C2.C1210, MWH06.C2.E1300 | 100% | 2021-03-22 | 2021-04-05 | VECA Electric [300 h] | 340 | 2 | 2 | 4 | 1C | 1 | 2 | 3 |  |  | 23 | 1 |
|  | 2 | **Finishes** |  | 2020-12-28 | 2021-01-04 |  |  |  |  |  |  |  |  |  |  |  |  |  |  |  |  |  |
| MWH06.C2.C1310 |  | Mechanical Corridor Finishes | 2d | 2020-12-28 A | 2021-01-04 A | MWH06.C2.C1200 | 100% | 2021-01-11 | 2021-01-12 | PCI [180 h] | 1189 | 1 | 2 | 6 | 2 | 1 | 2 |  |  |  |  |  |
|  | 6 | **Cell 3 Mechanical Corridor** |  | 2020-10-28 | 2021-03-17 |  |  |  |  |  |  |  |  |  |  |  |  |  |  |  |  |  |
|  | 1 | **Partitions** |  | 2020-10-28 | 2021-03-17 |  |  |  |  |  |  |  |  |  |  |  |  |  |  |  |  |  |
| MWH06.C2.C3190 |  | OverHead MEPFP Rough-In | 12d | 2020-10-28 A | 2020-11-19 A | MWH06.C2.C1160 FF, MWH-06-02-SOG-F, MWH-06-02-DRY-F | 100% | 2020-12-08 | 2020-12-21 | TCM Mechanical [400 h]; VECA Electric [960 h] | 356 | 2 | 2 | 4 | 2 | 3 | 2 |  |  | -0.47609541870446154 | 23 |  |
| MWH06.C2.C3240 |  | Electrical surface mounted Rough-in Above AHU | 5d | 2020-11-20 A | 2020-11-25 A | MWH06.C2.C3100, MWH06.C2.C3190 | 100% | 2020-12-14 | 2020-12-18 | VECA Electric [960 h] | 1193 | 2 | 2 | 4 | 2 | 3 | 2 |  |  | 100 |  |  |
| MWH06.C2.C3100 |  | Frame & Top out | 9d | 2020-12-07 A | 2020-12-17 A | MWH06.C2.C4020, MWH06.C2.CS1090, MWH06.C2.C1100 SS+4d | 100% | 2021-01-02 | 2021-01-12 | PCI [480 h] | 1192 | 2 | 2 | 6 | 2 | 3 | 2 | 3 |  |  |  |  |
| MWH06-9759 |  | Remaining MER raceway across Mech chase | 13d | 2021-03-10 A | 2021-03-17 A | MWH06.C2.C3350, MWH06.C2.C3100, MWH06.C2.C3190, MWH06.C2.C1210 FF, MWH06.C2.E1360, MWH06.C2.C3310 FF | 100% | 2021-03-25 | 2021-04-08 | VECA Electric [300 h] | 340 | 2 | 2 | 4 | 1C | 1 | 2 | 3 |  |  | 23 | 1 |
|  | 2 | **Finishes** |  | 2020-12-28 | 2021-01-04 |  |  |  |  |  |  |  |  |  |  |  |  |  |  |  |  |  |
| MWH06.C2.C3350 |  | Mechanical Corridor Finishes | 5d | 2020-12-28 A | 2021-01-04 A | MWH06.C2.C3240 | 100% |  |  | PCI [180 h] | 1195 | 1 | 2 | 6 | 2 | 3 | 2 |  |  |  |  |  |
|  | 7 | **Cell 2 Mechanical Corridor** |  | 2020-10-26 | 2021-03-09 |  |  |  |  |  |  |  |  |  |  |  |  |  |  |  |  |  |
|  | 1 | **Partitions** |  | 2020-10-26 | 2021-03-09 |  |  |  |  |  |  |  |  |  |  |  |  |  |  |  |  |  |
| MWH06.C2.C2140 |  | OverHead MEPFP Rough-In | 12d | 2020-10-26 A | 2020-11-19 A | MWH06.C2.CS1090, MWH-06-02-SOG-F, MWH-06-02-DRY-F | 100% | 2020-12-19 | 2021-01-07 | TCM Mechanical [400 h]; VECA Electric [960 h] | 351 | 2 | 2 | 4 | 2 | 2 | 2 |  |  | -0.47737862917678914 | 23 |  |
| MWH06.C2.C2190 |  | Electrical surface mounted Rough-in Above AHU | 5d | 2020-11-16 A | 2020-11-25 A | MWH06.C2.C2080, MWH06.C2.C2140, MWH06.C2.C2140 SS+5d | 100% | 2020-12-12 | 2020-12-17 | VECA Electric [960 h] | 1199 | 2 | 2 | 4 | 2 | 2 | 2 |  |  | 39.251237623762378 |  |  |
| MWH06.C2.C2080 |  | Frame & Top out | 8d | 2020-11-17 A | 2020-12-17 A | MWH06.C2.C2040 SS, MWH06.C2.CS1090 | 100% | 2020-11-30 | 2020-12-09 | PCI [480 h] | 1198 | 2 | 2 | 6 | 2 | 2 | 2 | 3 |  |  |  |  |
| MWH06-9760 |  | Remaining MER raceway across Mech chase | 13d | 2021-02-22 A | 2021-03-09 A | MWH06.C2.C2300, MWH06.C2.C2080, MWH06.C2.C2140, MWH06.C2.C2200 | 100% | 2021-03-22 | 2021-04-05 | VECA Electric [300 h] | 340 | 2 | 2 | 4 | 1C | 1 | 2 | 3 |  |  | 23 | 1 |

Notes:
- MWH06.C2.C1160: VECA Update Notes: Mech Piping and duct work needs to be completed prior to this starting, Paint complete on 12/12/20 working above CAHU conduit starting today. Remaing conduit to start after OH conduit in colo 1 mech chase completes due to constraints from other trades.
- MWH06.C2.C1200: VECA Update Notes: Wall finishes not complete yet for us to be able to start, paint competed starting today.
- MWH06.C2.C3190: VECA Update Notes: Mech Piping and duct work needs to be completed prior to this starting, Paint not complete yet for us to start above CAHU.
- MWH06.C2.C2140: VECA Update Notes: Mech Piping and duct work needs to be completed prior to this starting, Paint complete on 12/12/20 working above CAHU conduit starting today. Remaing conduit to start after OH conduit in colo 1 mech chase completes due to constraints from other trades.
- MWH06.C2.C2190: VECA Update Notes: Wall finishes not complete yet for us to be able to start, paint competed starting tomorrow as crew completes current task that has been constrained by another trade.

| ID | WBS | Activity | Duration | Start | Finish | Predecessors | Complete | Planned start | Planned finish | Resources | MSP Activity ID | HRA - Safety Level | COLO | TRADE | MSFT-Funding Releases | CELL | WBS | VECA % Complete | MWH06- TRADES | HRA - Required Permit- Priority-1 | Critical Path-1 | Discipline | MER | HRA - Required Permit- Priority-2 | Critical Path mer to COLO |
| --- | --- | --- | --- | --- | --- | --- | --- | --- | --- | --- | --- | --- | --- | --- | --- | --- | --- | --- | --- | --- | --- | --- | --- | --- | --- |
|  | 2 | **Finishes** |  | 2020-12-28 | 2021-01-04 |  |  |  |  |  |  |  |  |  |  |  |  |  |  |  |  |  |  |  |  |
| MWH06.C2.C2300 |  | Mechanical Corridor Finishes | 5d | 2020-12-28 A | 2021-01-04 A | MWH06.C2.C2190, MWH06.C2.C2080 | 100% |  |  | PCI [180 h] | 1201 | 1 | 2 | 6 | 2 | 2 | 2 |  |  |  |  |  |  |  |  |
|  | 8 | **Cell 4 Mechanical Corridor** |  | 2020-10-28 | 2021-03-24 |  |  |  |  |  |  |  |  |  |  |  |  |  |  |  |  |  |  |  |  |
|  | 1 | **Partitions** |  | 2020-10-28 | 2021-03-24 |  |  |  |  |  |  |  |  |  |  |  |  |  |  |  |  |  |  |  |  |
| MWH06.C2.C4150 |  | OverHead MEPFP Rough-In | 12d | 2020-10-28 A | 2020-11-19 A | MWH06.C2.C2140, MWH-06-02-SOG-F, MWH-06-02-DRY-F | 100% | 2020-11-30 | 2020-12-14 | TCM Mechanical [400 h]; VECA Electric [960 h] | 353 | 2 | 2 | 4 | 2 | 4 | 2 | -0.46185628312777449 | 23 |  |  |  |  |  |  |
| MWH06.C2.C4180 |  | Electrical surface mounted Rough-in Above AHU | 5d | 2020-11-20 A | 2020-11-23 A | MWH06.C2.C4150, MWH06.C2.C4150 SS+5d | 100% | 2020-11-30 | 2020-12-04 | VECA Electric [960 h] | 1205 | 2 | 2 | 4 | 2 | 4 | 2 | 100 |  |  |  |  |  |  |  |
| MWH06.C2.C4080 |  | Frame & Top out | 9d | 2020-12-07 A | 2020-12-17 A | MWH06.C2.CS1090, MWH06.C2.C2080 SS+5d, MWH06.C2.C3100 SS | 100% | 2021-01-02 | 2021-01-12 | PCI [480 h] | 1204 | 2 | 2 | 6 | 2 | 4 | 2 |  |  | 3 |  |  |  |  |  |
| MWH06-9761 |  | Remaining MER raceway across Mech chase | 13d | 2021-03-12 A | 2021-03-24 A | MWH-06-02-ROJ-F, MWH06.C2.C4300, MWH06.C2.C4080, MWH06.C2.C4150, MWH06.C2.C2200, MWH06.C2.E1410 | 100% | 2021-03-22 | 2021-04-05 | VECA Electric [300 h] | 340 | 2 | 2 | 4 | 1C | 1 | 2 |  | 23 | 3 | 1 |  |  |  |  |
|  | 2 | **Finishes** |  | 2020-12-28 | 2021-01-04 |  |  |  |  |  |  |  |  |  |  |  |  |  |  |  |  |  |  |  |  |
| MWH06.C2.C4300 |  | Mechanical Corridor Finishes | 5d | 2020-12-28 A | 2021-01-04 A | MWH06.C2.C4180, MWH06.C2.C4080 | 100% |  |  | PCI [180 h] | 1207 | 1 | 2 | 6 | 2 | 4 | 2 |  |  |  |  |  |  |  |  |
|  | 4 | **Systems Buildout** |  | 2020-09-21 | 2021-08-19 |  |  |  |  |  |  |  |  |  |  |  |  |  |  |  |  |  |  |  |  |
|  | 1 | **Exterior Equipment Cell 1** |  | 2020-09-28 | 2021-06-15 |  |  |  |  |  |  |  |  |  |  |  |  |  |  |  |  |  |  |  |  |
|  | 1 | **Electrical** |  | 2020-09-28 | 2021-05-10 |  |  |  |  |  |  |  |  |  |  |  |  |  |  |  |  |  |  |  |  |
| MWH06.C2.C1010 |  | Electrical Underground Rough-In | 12d | 2020-09-28 A | 2020-10-07 A | MWH06.C1.C3000, MWH06.C2.CS1060 | 100% | 2020-11-02 | 2020-11-16 | VECA Electric [960 h] | 51 | 2 | 2 | 4 | 2 | 1 | 3 | 100 |  |  |  |  |  |  |  |
| MWH06.C2.C1020 |  | Exterior Equipment Pads - for UPM's | 4d | 2020-11-09 A | 2020-11-13 A | MWH06.C2.C1010 SS | 100% | 2020-11-30 | 2020-12-03 | OLSON [400 h]; VECA Electric [80 h] | 387 | 2 | 2 | 2 | 2 | 1 | 3 |  |  |  |  |  |  |  |  |
| MWH06.C2.C1040 |  | Exterior Equipment Pads - Electrical | 12d | 2020-11-14 A | 2020-11-17 A | MWH06.C2.C4040, MWH06.C2.C1010 | 100% | 2020-12-14 | 2020-12-30 | OLSON [1200 h]; VECA Electric [240 h] | 151 | 2 | 2 | 4 | 2 | 1 | 3 | 100 |  |  |  | CONC | 1 |  |  |
| MWH06.C2.C1030 |  | Set Electrical Equipment-UPM | 4d | 2020-12-08 A | 2020-12-08 A | MWH06.C2.C1020, MWH06.C2.E1000, MWH06.C2.E1010 | 100% | 2021-01-02 | 2021-01-06 | VECA Electric [80 h] | 764 | 3 | 2 | 4 | 2 | 1 | 3 | 100 |  | 5 |  |  |  | 4 |  |
| MWH06.C2.C1080 |  | Set Exterior Electrical OFCI Equipment - GEN | 12d | 2020-12-28 A | 2020-12-29 A | MWH06.C2.C1040, MWH06.C2.E1040, MWH06.C2.E1050 | 100% | 2021-01-09 | 2021-01-23 | VECA Electric [480 h] | 1211 | 4 | 2 | 4 | 2 | 1 | 3 | 0 |  | 5 |  |  |  | 4 |  |
| MWH06.C2.C1250 |  | Lift & Set MER in Place | 5d | 2021-02-04 A | 2021-02-04 A | MWH06.C2.E1120, MWH06.C2.C1040, MWH06.C2.E1300, MWH06-C2.P1600, MWH06.C1.C4270 | 100% | 2021-03-01 | 2021-03-05 | VECA Electric [120 h] | 1213 | 4 | 2 | 4 | 2 | 1 | 3 | 0 |  | 5 |  |  | 4 | 4 | 2 |
| MWH06.C2.C1290 |  | Steel Support for OH Conductors & Cable Tray Installation | 5d | 2021-02-05 A | 2021-02-12 A | MWH06.C2.C1040, MWH06.C2.C1250 | 100% | 2021-03-01 | 2021-03-05 | Steel [160 h] | 1212 | 3 | 2 | 3 | 2 | 1 | 3 |  |  | 5 |  |  |  | 2 |  |
| MWH06.C2.C1330 |  | Assemble MER & Complete Shipping Split (SE) | 10d | 2021-02-05 A | 2021-02-10 A | MWH06.C2.C1250 | 100% | 2021-03-01 | 2021-03-11 |  | 1217 | 2 | 2 |  | 2 | 1 | 3 |  |  | 5 |  |  | 4 | 4 | 2 |
| MWH06.C2.C1380 |  | GEN & UPM to MER Cable Bus Install | 10d | 2021-03-05 A | 2021-03-13 A | MWH06.C2.C1290, MWH06.C2.C1330, MWH06-9935, MWH06.C2.C1080, MWH06-10255 | 100% | 2021-03-22 | 2021-04-01 | VECA Electric [560 h] | 1215 | 2 | 2 | 4 | 2 | 1 | 3 | 0 |  | 5 |  |  |  | 4 | 2 |
| MWH06-10363 |  | Generator & Utility Power Pull | 4d | 2021-03-25 A | 2021-03-30 A | MWH06-10372, MWH06.C2.C1380, MWH06.C1.C3410, MWH06.D6.C2.C1150, MWH06.C2.C1290, MWH06.C2.C1080, MWH06-10366 | 100% | 2021-04-30 | 2021-05-05 | VECA Electric | 1214 | 2 | 2 | 4 | 2 | 1 | 3 | 0 |  | 6 |  |  |  | 11 | 2 |
| MWH06.C2.C1410 |  | Generator & Utility Power Test-Term | 8d | 2021-03-31 A | 2021-04-16 A | MWH06.C2.C1380, MWH06.C2.C1080, MWH06.C2.C1290, MWH06.D6.C2.C1150, MWH06.C1.C3410, MWH06-10363, MWH06-10366 | 100% | 2021-04-30 | 2021-05-10 | VECA Electric [640 h] | 1214 | 2 | 2 | 4 | 2 | 1 | 3 | 0 |  | 6 |  |  |  | 11 | 2 |
| MWH06.C2.C1430 |  | Electrical Feeders to Mechanical Equipment Pull-Test-Term | 20d | 2021-04-16 A | 2021-05-10 A | MWH06.C2.C1120, MWH06.C2.C1080, MWH06.C2.C1290, MWH06.C2.C1330, MWH06.C2.C1380, MWH06.D6.C2.C1130, MWH06-9935, MWH06.C2.C1410 SS+6d, MWH06-9758, MWH06-10283 | 100% | 2021-04-30 | 2021-05-25 | VECA Electric [1080 h] | 1216 | 2 | 2 | 4 | 2 | 1 | 3 | 0 |  | 6 |  |  |  | 11 | 2 |

Notes:
- MWH06.C2.C4150: VECA Update Notes: Mech Piping and duct work needs to be completed prior to this starting, Paint not complete yet for us to start above CAHU.
- MWH06.C2.C1030: VECA Update Notes: Colo 2 UPMs being repurposed to colo 1, still issues with anchors, not preventing MV cable from being pullled
- MWH06.C2.C1080: VECA Update Notes: As of 12/14/20 2.1 Gen expeced onsite on 12/29/20
- MWH06-10363: VECA Update Notes: Incentive is on the start and finish of the last Cell in a COLO
- MWH06.C2.C1410: VECA Update Notes: Incentive is on the start and finish of the last Cell in a COLO

| ID | WBS | Activity | Duration | Start | Finish | Predecessors | Complete | Planned start | Planned finish | Constraint | Resources | MSP Activity ID | HRA - Safety Level | COLO | TRADE | MSFT-Funding Releases | CELL | WBS | Discipline | HRA - Required Permit- Priority-1 | HRA - Required Permit- Priority-2 | VECA % Complete | MER | Critical Path mer to COLO |
| --- | --- | --- | --- | --- | --- | --- | --- | --- | --- | --- | --- | --- | --- | --- | --- | --- | --- | --- | --- | --- | --- | --- | --- | --- |
|  | 2 | **Mechanical** |  | 2020-09-28 | 2021-04-06 |  |  |  |  |  |  |  |  |  |  |  |  |  |  |  |  |  |  |  |
| MWH06.C2.C1000 |  | Mechanical/Plumbing Underground Rough-In | 12d | 2020-09-28 A | 2020-10-07 A | MWH06.C1.C1020 | 100% | 2020-11-02 | 2020-11-16 |  | TCM Mechanical [720 h] | 1221 | 1 | 2 | 51 | 2 | 1 | 3 |  |  |  |  |  |  |
| MWH06.C2.C1060 |  | Exterior Equipment Pads - Mechanical | 12d | 2020-11-02 A | 2020-11-06 A | MWH06.C2.C1040 SS+6d, MWH06.C2.C1000, MWH06.C1.C1060 | 100% | 2020-12-21 | 2021-01-08 |  | OLSON; VECA Electric | 153 | 2 | 2 |  | 2 | 1 | 3 | CONC |  |  |  |  |  |
| MWH06.C2.C1120 |  | Set Exterior Mechanical OFCI Equipment (FC) | 12d | 2020-12-07 A | 2020-12-18 A | MWH06.C2.C1070, MWH06.C2.E1140, MWH06.C2.E1150, MWH06-C2.P1700 | 100% | 2021-01-11 | 2021-01-25 |  | TCM Mechanical [720 h] | 1218 | 3 | 2 | 51 | 2 | 1 | 3 |  | 5 | 4 |  |  |  |
| MWH06.C2.C1070 |  | Steel Supports for Exterior Mechanical Equipment (Fluid Cooler Steel & Pipe Steel Supports) | 4d | 2021-01-04 A | 2021-01-06 A | MWH06.C2.C1060 | 100% | 2021-01-11 | 2021-01-14 |  | Steel [160 h] | 424 | 3 | 2 | 3 | 2 | 1 | 3 |  | 5 | 2 |  |  |  |
| MWH06.C2.C1121 |  | Set Exterior Water Treatment equipment | 2d | 2021-01-19 A | 2021-01-19 A | MWH06.D5.S1000, MWH06.D5.S1030, MWH06.C2.C1060 | 100% | 2021-02-01 | 2021-02-02 |  | TCM Mechanical [120 h] |  | 2 | 2 |  |  | 1 |  |  | 5 | 4 |  |  |  |
| MWH06.C2.C1130 |  | Mechanical Equipment Piping Connections | 6d | 2021-03-03 A | 2021-03-10 A | MWH06.C2.C1120 SS+5d, MWH06.C2.C1121, MWH06.C2.C1121 FF | 100% | 2021-03-22 | 2021-03-27 |  | TCM Mechanical [720 h] | 1222 | 2 | 2 | 51 | 2 | 1 | 3 |  | 3 | 4 |  |  |  |
| MWH06.C2.C1135 |  | Set Gen Stack / Exhaust duct | 3d | 2021-04-06 A | 2021-04-06 A | MWH06.C1.C3135, MWH06.C2.C1080 SS | 100% | 2021-04-30 | 2021-05-04 | start on or after 2021-04-05 | TCM Mechanical [60 h]; Steel [120 h] |  | 4 | 2 | 51 |  | 1 | 3 |  | 5 | 4 |  |  |  |
|  | 3 | **Plumbing** |  |  |  |  |  |  |  |  |  |  |  |  |  |  |  |  |  |  |  |  |  |  |
|  | 4 | **Special Systems** |  | 2021-04-01 | 2021-06-15 |  |  |  |  |  |  |  |  |  |  |  |  |  |  |  |  |  |  |  |
| MWH06.C2.C1190 |  | Fire Alarm Installation | 12d | 2021-04-01 A | 2021-04-16 A | MWH06.C2.C1120, MWH06.C2.C1080 | 100% | 2021-05-11 | 2021-05-25 |  | VECA Electric [240 h] | 1225 | 1 | 2 |  | 2 | 1 | 3 |  | 6 | 3 |  |  |  |
| MWH06.C2.C1450 |  | Controls Installation | 12d | 2021-06-01 A | 2021-06-15 A | MWH06.C2.C1080, MWH06.C2.C1120, MWH06.C2.C1190, MWH06.C2.C1430, MWH06.D6.C2.C1170, MWH06-10531, MWH06-10530 | 100% | 2021-06-28 | 2021-07-13 |  | VECA Electric [720 h] | 135 | 1 | 2 | 4 | 2 | 1 | 3 |  | 6 | 3 | 0 |  |  |
|  | 2 | **Exterior Equipment Cell 3** |  | 2020-09-21 | 2021-06-15 |  |  |  |  |  |  |  |  |  |  |  |  |  |  |  |  |  |  |  |
|  | 1 | **Electrical** |  | 2020-09-21 | 2021-05-25 |  |  |  |  |  |  |  |  |  |  |  |  |  |  |  |  |  |  |  |
| MWH06.C2.C3010 |  | Electrical Underground Rough-In | 12d | 2020-09-21 A | 2020-10-06 A | MWH06.C2.C1010 | 100% | 2020-11-02 | 2020-11-16 |  | VECA Electric [960 h] | 1228 | 2 | 2 | 4 | 2 | 3 | 3 |  |  |  | 100 |  |  |
| MWH06.C2.C3020 |  | Exterior Equipment Pads - for UPM's | 4d | 2020-11-09 A | 2020-11-13 A | MWH06.C2.C3010 SS | 100% | 2020-11-30 | 2020-12-03 |  | OLSON; VECA Electric | 389 | 2 | 2 | 2 | 2 | 3 | 3 |  |  |  |  |  |  |
| MWH06.C2.C3050 |  | Exterior Equipment Pads - Electrical | 12d | 2020-11-14 A | 2020-11-19 A | MWH06.C2.C4040 FF, MWH06.C2.C4040, MWH06.C2.C3010 | 100% | 2020-12-14 | 2020-12-30 |  | OLSON; VECA Electric | 316 | 2 | 2 | 4 | 2 | 3 | 3 | CONC |  |  | 100 | 1 |  |
| MWH06.C2.C3040 |  | Set Electrical Equipment-UPM | 4d | 2020-12-16 A | 2020-12-17 A | MWH06.C2.C3020, MWH06.C2.E1080, MWH06.C2.E1090 | 100% | 2021-01-02 | 2021-01-06 |  | VECA Electric [80 h] | 763 | 3 | 2 | 4 | 2 | 3 | 3 |  | 5 | 4 | 0 |  |  |
| MWH06.C2.C3080 |  | Set Exterior Electrical OFCI Equipment - GEN | 5d | 2021-01-19 A | 2021-01-19 A | MWH06.C2.C3050, MWH06.C2.E1160, MWH06.C2.E1170 | 100% | 2021-02-01 | 2021-02-05 |  | VECA Electric [200 h] | 1229 | 4 | 2 | 4 | 2 | 3 | 3 |  | 5 | 4 | 0 |  |  |
| MWH06.C2.C3230 |  | Lift & Set MER in Place | 5d | 2021-03-01 A | 2021-03-02 A | MWH06.C2.C3050, MWH06.C2.E1210, MWH06.C2.E1360, MWH06.C2.C2290 SS+1d, MWH06-10259 | 100% | 2021-03-23 | 2021-03-27 |  | VECA Electric [120 h] | 1231 | 4 | 2 | 4 | 2 | 3 | 3 |  | 5 | 4 | 0 | 4 | 2 |
| MWH06.C2.C3270 |  | Steel Support for OH Conductors & Cable Tray Installation | 5d | 2021-03-03 A | 2021-03-17 A | MWH06.C2.C3050, MWH06.C2.C3230, MWH06.C2.C1290 | 100% | 2021-03-29 | 2021-04-02 |  | Steel [160 h] | 1230 | 3 | 2 | 3 | 2 | 3 | 3 |  | 5 | 2 |  |  |  |
| MWH06.C2.C3310 |  | Assemble MER & Complete Shipping Split (SE) | 10d | 2021-03-03 A | 2021-03-17 A | MWH06.C2.C3230 | 100% | 2021-03-29 | 2021-04-08 |  |  | 1235 | 2 | 2 |  | 2 | 3 | 3 |  | 5 | 4 |  | 4 | 2 |
| MWH06.C2.C3340 |  | GEN & UPM to MER Cable Bus Instal | 10d | 2021-03-18 A | 2021-03-25 A | MWH06.C2.C3270, MWH06.C2.C3310, MWH06-9937, MWH06.C2.C3080, MWH06-10308 | 100% | 2021-04-16 | 2021-04-27 |  | VECA Electric [560 h] | 1233 | 2 | 2 | 4 | 2 | 3 | 3 |  | 5 | 4 | 0 |  | 2 |
| MWH06-10362 |  | Generator & Utility Power Pull | 4d | 2021-04-07 A | 2021-04-13 A | MWH06-10418, MWH06.C2.C3340, MWH06.D6.C2.C3150, MWH06.C2.C3270, MWH06.C2.C3080, MWH06.C2.C1410 | 100% | 2021-05-11 | 2021-05-14 |  | VECA Electric [320 h] | 1232 | 2 | 2 | 4 | 2 | 3 | 3 |  | 6 | 11 | 0 |  | 2 |
| MWH06.C2.C3380 |  | Generator & Utility Power Test-Term | 8d | 2021-04-13 A | 2021-04-24 A | MWH06.C2.C3340, MWH06.C2.C3080, MWH06.C2.C3270, MWH06.D6.C2.C3150, MWH06.C2.C1410, MWH06-10362 | 100% | 2021-05-06 | 2021-05-14 |  | VECA Electric [640 h] | 1232 | 2 | 2 | 4 | 2 | 3 | 3 |  | 6 | 11 | 0 |  | 2 |
| MWH06.C2.C3430 |  | Electrical Feeders to Mechanical Equipment Pull-Test-Term | 21d | 2021-04-29 A | 2021-05-25 A | MWH06.C2.C3120, MWH06.C2.C3080, MWH06.C2.C3270, MWH06.C2.C3310, MWH06.C2.C3340, MWH06.D6.C2.C3130, MWH06-9937, MWH06.C2.C3380 SS+6d, MWH06-9759 SS+8d, MWH06-10531, MWH06-10530 | 100% | 2021-04-30 | 2021-05-26 |  | VECA Electric [1080 h] | 1234 | 2 | 2 | 4 | 2 | 3 | 3 |  | 6 | 11 | 0 |  | 2 |

Notes:
- MWH06.C2.C3040: VECA Update Notes: Colo 2 UPMs being repurposed to colo 1
- MWH06-10362: VECA Update Notes: Incentive is on the start and finish of the last Cell in a COLO
- MWH06.C2.C3380: VECA Update Notes: Incentive is on the start and finish of the last Cell in a COLO

| ID | WBS | Activity | Duration | Start | Finish | Predecessors | Complete | Planned start | Planned finish | Constraint | Resources | MSP Activity ID | HRA - Safety Level | COLO | TRADE | MSFT-Funding Releases | CELL | WBS | Discipline | HRA - Required Permit- Priority-1 | HRA - Required Permit- Priority-2 | VECA % Complete | MER | Critical Path mer to COLO |
| --- | --- | --- | --- | --- | --- | --- | --- | --- | --- | --- | --- | --- | --- | --- | --- | --- | --- | --- | --- | --- | --- | --- | --- | --- |
|  | 2 | **Mechanical** |  | 2020-09-28 | 2021-04-06 |  |  |  |  |  |  |  |  |  |  |  |  |  |  |  |  |  |  |  |
| MWH06.C2.C3000 |  | Mechanical/Plumbing Underground Rough-In | 12d | 2020-09-28 A | 2020-10-06 A | MWH06.C2.C1000 | 100% | 2020-11-02 | 2020-11-16 |  | TCM Mechanical [720 h] | 1241 | 1 | 2 | 51 | 2 | 3 | 3 |  |  |  |  |  |  |
| MWH06.C2.C3060 |  | Exterior Equipment Pads - Mechanical | 12d | 2020-11-16 A | 2020-11-19 A | MWH06.C2.C3050 SS+6d, MWH06.C2.C3000 | 100% | 2020-12-21 | 2021-01-08 |  | OLSON; VECA Electric | 1240 | 2 | 2 |  | 2 | 3 | 3 | CONC |  |  |  |  |  |
| MWH06.C2.C3070 |  | Steel Supports for Exterior Mechanical Equipment (Fluid Cooler Steel & Pipe Steel Supports) | 4d | 2021-01-04 A | 2021-01-06 A | MWH06.C2.C3060 | 100% | 2021-01-11 | 2021-01-14 |  | Steel [160 h] | 426 | 3 | 2 | 3 | 2 | 3 | 3 |  | 5 | 2 |  |  |  |
| MWH06.C2.C3120 |  | Set Exterior Mechanical OFCI Equipment (FC / WTE / Pumps) | 12d | 2021-01-04 A | 2021-01-08 A | MWH06.C2.C3070, MWH06.C2.E1220, MWH06.C2.E1230 | 100% | 2021-01-11 | 2021-01-25 |  | TCM Mechanical [720 h] | 1236 | 3 | 2 | 51 | 2 | 3 | 3 |  | 5 | 4 |  |  |  |
| MWH06.C2.C3121 |  | Set Exterior Water Treatment equipment | 2d | 2021-01-19 A | 2021-01-19 A | MWH06.D5.S1000, MWH06.D5.S1030, MWH06.C2.C3060 | 100% | 2021-02-01 | 2021-02-02 | start on or after 2021-01-21 | TCM Mechanical [120 h] |  | 2 | 2 |  |  | 3 |  |  | 5 | 4 |  |  |  |
| MWH06.C2.C3150 |  | Mechanical Equipment Piping Connections | 6d | 2021-03-09 A | 2021-03-16 A | MWH06.C2.C3120 SS+5d, MWH06.C2.C3121, MWH06.C2.C3121 FF, MWH06.C2.C1130 | 100% | 2021-03-22 | 2021-03-27 |  | TCM Mechanical [720 h] | 20 | 2 | 2 | 51 | 2 | 3 | 3 |  | 3 | 4 |  |  |  |
| MWH06.C2.C3135 |  | Set Gen Stack / Exhaust duct | 3d | 2021-04-06 A | 2021-04-06 A | MWH06.C2.C3080 | 100% | 2021-04-30 | 2021-05-04 | start on or after 2021-04-05 | TCM Mechanical [60 h]; Steel [120 h] |  | 4 | 2 | 51 |  | 3 | 3 |  | 5 | 4 |  |  |  |
|  | 3 | **Plumbing** |  |  |  |  |  |  |  |  |  |  |  |  |  |  |  |  |  |  |  |  |  |  |
|  | 4 | **Special Systems** |  | 2021-04-01 | 2021-06-15 |  |  |  |  |  |  |  |  |  |  |  |  |  |  |  |  |  |  |  |
| MWH06.C2.C3180 |  | Fire Alarm Installation | 12d | 2021-04-01 A | 2021-04-16 A | MWH06.C2.C3120, MWH06.C2.C3080, MWH06.C2.C3430 | 100% | 2021-05-26 | 2021-06-09 |  | VECA Electric [240 h] | 1244 | 1 | 2 |  | 2 | 3 | 3 |  | 6 | 3 |  |  |  |
| MWH06.C2.C3440 |  | Controls Installation | 12d | 2021-06-01 A | 2021-06-15 A | MWH06.C2.C3080, MWH06.C2.C3120, MWH06.C2.C3180 SS+5d, MWH06.C2.C3430, MWH06.D6.C2.C3170, MWH06-10531, MWH06-10530 | 100% | 2021-06-28 | 2021-07-13 |  | VECA Electric [720 h] | 140 | 1 | 2 | 4 | 2 | 3 | 3 |  | 6 | 3 | 0 |  |  |
|  | 3 | **Exterior Equipment Cell 2** |  | 2020-09-28 | 2021-06-15 |  |  |  |  |  |  |  |  |  |  |  |  |  |  |  |  |  |  |  |
|  | 1 | **Electrical** |  | 2020-09-28 | 2021-05-10 |  |  |  |  |  |  |  |  |  |  |  |  |  |  |  |  |  |  |  |
| MWH06.C2.C2000 |  | Electrical Underground Rough-In | 12d | 2020-09-28 A | 2020-10-06 A | MWH06.C1.C4000 | 100% | 2020-11-02 | 2020-11-16 |  | VECA Electric [960 h] | 703 | 2 | 2 | 4 | 2 | 2 | 3 |  |  |  | 100 |  |  |
| MWH06.C2.C2030 |  | Exterior Equipment Pads - Electrical | 12d | 2020-10-26 A | 2020-11-03 A | MWH06.C2.C2000 | 100% | 2020-11-02 | 2020-11-16 |  | OLSON [1200 h]; VECA Electric [240 h] | 318 | 2 | 2 | 4 | 2 | 2 | 3 | CONC |  |  | 100 | 1 |  |
| MWH06.C2.C2010 |  | Exterior Equipment Pads - for UPM's | 4d | 2020-11-02 A | 2020-11-04 A | MWH06.C2.C2000 SS | 100% | 2020-11-30 | 2020-12-03 |  | OLSON [400 h]; VECA Electric [80 h] | 391 | 2 | 2 | 2 | 2 | 2 | 3 |  |  |  |  |  |  |
| MWH06.C2.C2020 |  | Set Electrical Equipment-UPM | 4d | 2020-11-04 A | 2020-11-05 A | MWH06.C2.C2010, MWH06.C2.E1020, MWH06.C2.E1030 | 100% | 2021-01-02 | 2021-01-06 |  | VECA Electric [80 h] | 749 | 3 | 2 | 4 | 2 | 2 | 3 |  | 5 | 4 | 0 |  |  |
| MWH06.C2.C2060 |  | Set Exterior Electrical OFCI Equipment - GEN | 5d | 2021-01-09 A | 2021-01-09 A | MWH06.C2.C2030, MWH06.C2.E1060, MWH06.C2.E1070 | 100% | 2021-02-01 | 2021-02-05 |  | VECA Electric [200 h] | 1247 | 4 | 2 | 4 | 2 | 2 | 3 |  | 5 | 4 | 0 |  |  |
| MWH06.C2.C2290 |  | Lift & Set MER in Place | 5d | 2021-03-01 A | 2021-03-01 A | MWH06.C2.E1130, MWH06.C2.C2030, MWH06.C2.E1310, MWH06.C2.C1250, MWH06-10253 | 100% | 2021-03-22 | 2021-03-26 |  | VECA Electric | 1238 | 4 | 2 | 4 | 2 | 2 | 3 |  | 5 | 4 | 0 | 4 | 2 |
| MWH06.C2.C2340 |  | Assemble MER & Complete Shipping Split (SE) | 10d | 2021-03-02 A | 2021-03-18 A | MWH06.C2.C2290 | 100% | 2021-03-27 | 2021-04-07 |  |  | 1252 | 2 | 2 |  | 2 | 2 | 3 |  | 5 | 4 |  | 4 | 2 |
| MWH06.C2.C2330 |  | Steel Support for OH Conductors & Cable Tray Installation | 4d | 2021-03-03 A | 2021-03-17 A | MWH06.C2.C2030, MWH06.C2.C2290 | 100% | 2021-03-27 | 2021-03-31 |  | Steel [160 h] | 1248 | 3 | 2 | 3 | 2 | 2 | 3 |  | 5 | 2 |  |  |  |
| MWH06.C2.C2370 |  | GEN & UPM to MER Cable Bus Instal | 10d | 2021-03-16 A | 2021-03-31 A | MWH06.C2.C2330, MWH06.C2.C2340, MWH06-9936, MWH06.C2.C2060, MWH06-10309 | 100% | 2021-03-25 | 2021-04-05 |  | VECA Electric [560 h] | 1250 | 2 | 2 | 4 | 2 | 2 | 3 |  | 5 | 4 | 0 |  | 2 |
| MWH06-10361 |  | Generator & Utility Power Pull | 5d | 2021-03-26 A | 2021-03-31 A | MWH06-10417, MWH06.C2.C2370, MWH06.C1.C4440, MWH06.D6.C2.C2150, MWH06.C2.C2330, MWH06.C2.C2060 | 100% |  |  |  | VECA Electric [320 h] | 1249 | 2 | 2 | 4 | 2 | 2 | 3 |  | 6 | 11 | 0 |  | 2 |
| MWH06.C2.C2420 |  | Generator & Utility Power Test-Term | 8d | 2021-04-06 A | 2021-04-16 A | MWH06.C2.C2060, MWH06.C2.C2330, MWH06.C2.C2370, MWH06.D6.C2.C2150, MWH06.C1.C4440, MWH06-10361 | 100% | 2021-04-06 | 2021-04-15 |  | VECA Electric [640 h] | 1249 | 2 | 2 | 4 | 2 | 2 | 3 |  | 6 | 11 | 0 |  | 2 |
| MWH06.C2.C2410 |  | Electrical Feeders to Mechanical Equipment Pull-Test-Term | 20d | 2021-04-16 A | 2021-05-10 A | MWH06.C2.C2170, MWH06.C2.C2060, MWH06.C2.C2330, MWH06.C2.C2340, MWH06.D6.C2.C2130, MWH06-9936, MWH06.C2.C2420 SS+6d, MWH06-9760 SS+8d, MWH06.C1.C4410, MWH06.D6.C1.C4160, MWH06-10291, MWH06-10531, MWH06-10530 | 100% | 2021-04-30 | 2021-05-25 |  | VECA Electric [1080 h] | 1251 | 2 | 2 | 4 | 2 | 2 | 3 |  | 6 | 11 | 0 |  | 2 |

Notes:
- MWH06.C2.C2020: VECA Update Notes: Colo 2 UPMs being repurposed to colo 1, still issues with anchors, not preventing MV cable from being pullled
- MWH06-10361: VECA Update Notes: Incentive is on the start and finish of the last Cell in a COLO
- MWH06.C2.C2420: VECA Update Notes: Incentive is on the start and finish of the last Cell in a COLO

| ID | WBS | Activity | Duration | Start | Finish | Predecessors | Complete | Planned start | Planned finish | Constraint | Resources | MSP Activity ID | HRA - Safety Level | COLO | TRADE | MSFT-Funding Releases | CELL | WBS | Discipline | HRA - Required Permit- Priority-1 | HRA - Required Permit- Priority-2 | VECA % Complete | MER | COLO CRITICAL | Critical Path mer to COLO |
| --- | --- | --- | --- | --- | --- | --- | --- | --- | --- | --- | --- | --- | --- | --- | --- | --- | --- | --- | --- | --- | --- | --- | --- | --- | --- |
|  | 2 | **Mechanical** |  | 2020-09-28 | 2021-04-06 |  |  |  |  |  |  |  |  |  |  |  |  |  |  |  |  |  |  |  |  |
| MWH06.C2.C2050 |  | Mechanical/Plumbing Underground Rough-In | 12d | 2020-09-28 A | 2020-10-06 A | MWH06.C2.C3000 | 100% | 2020-11-17 | 2020-12-03 |  | TCM Mechanical [720 h] | 1257 | 1 | 2 | 51 | 2 | 2 | 3 |  |  |  |  |  |  |  |
| MWH06.C2.C2090 |  | Exterior Equipment Pads - Mechanical | 12d | 2020-10-30 A | 2020-11-13 A | MWH06.C2.C2030 SS+6d, MWH06.C2.C2050 | 100% | 2020-11-02 | 2020-11-16 |  | OLSON [1200 h]; VECA Electric [240 h] | 1256 | 2 | 2 |  | 2 | 2 | 3 | CONC |  |  |  |  |  |  |
| MWH06.C2.C2110 |  | Steel Supports for Exterior Mechanical Equipment (Fluid Cooler Steel & Pipe Steel Supports) | 4d | 2021-01-04 A | 2021-01-06 A | MWH06.C2.C2090 | 100% | 2021-01-11 | 2021-01-14 |  | Steel [160 h] | 428 | 3 | 2 | 3 | 2 | 2 | 3 |  | 5 | 2 |  |  |  |  |
| MWH06.C2.C2170 |  | Set Exterior Mechanical OFCI Equipment (FC / WTE / Pumps) | 12d | 2021-01-08 A | 2021-01-11 A | MWH06.C2.C2110, MWH06.C2.E1240, MWH06.C2.E1250 | 100% | 2021-01-15 | 2021-01-29 |  | TCM Mechanical [720 h] | 1253 | 3 | 2 | 51 | 2 | 2 | 3 |  | 5 | 4 |  |  |  |  |
| MWH06.C2.C2171 |  | Set Exterior Water Treatment equipment | 2d | 2021-01-26 A | 2021-01-26 A | MWH06.D5.S1000, MWH06.D5.S1030, MWH06.C2.C2090 | 100% | 2021-02-01 | 2021-02-02 | start on or after 2021-01-26 | TCM Mechanical [120 h] |  | 2 | 2 |  |  | 2 |  |  | 5 | 4 |  |  |  |  |
| MWH06.C2.C2180 |  | Mechanical Equipment Piping Connections | 6d | 2021-03-15 A | 2021-03-23 A | MWH06.C2.C2170 SS+5d, MWH06.C2.C2171, MWH06.C2.C2171 FF, MWH06.C2.C3150 | 100% | 2021-03-22 | 2021-03-27 |  | TCM Mechanical [720 h] | 1258 | 2 | 2 | 51 | 2 | 2 | 3 |  | 3 | 4 |  |  |  |  |
| MWH06.C2.C2135 |  | Set Gen Stack / Exhaust duct | 3d | 2021-04-06 A | 2021-04-06 A | MWH06.C2.C2060 | 100% | 2021-04-30 | 2021-05-04 | start on or after 2021-04-05 | TCM Mechanical [60 h]; Steel [120 h] |  | 4 | 2 | 51 |  | 2 | 3 |  | 5 | 4 |  |  |  |  |
|  | 3 | **Plumbing** |  |  |  |  |  |  |  |  |  |  |  |  |  |  |  |  |  |  |  |  |  |  |  |
|  | 4 | **Special Systems** |  | 2021-04-01 | 2021-06-15 |  |  |  |  |  |  |  |  |  |  |  |  |  |  |  |  |  |  |  |  |
| MWH06.C2.C2230 |  | Fire Alarm Installation | 12d | 2021-04-01 A | 2021-04-16 A | MWH06.C2.C2170, MWH06.C2.C2060, MWH06.C2.C2410 | 100% | 2021-05-11 | 2021-05-25 |  | VECA Electric [240 h] | 142 | 1 | 2 |  | 2 | 2 | 3 |  | 6 | 3 |  |  |  |  |
| MWH06.C2.C2430 |  | Controls Installation | 12d | 2021-06-01 A | 2021-06-15 A | MWH06.C2.C2060, MWH06.C2.C2170, MWH06.C2.C2230 SS+5d, MWH06.C2.C2410, MWH06.D6.C2.C2160, MWH06-10531, MWH06-10530 | 100% | 2021-06-28 | 2021-07-13 |  | VECA Electric [720 h] | 141 | 1 | 2 | 4 | 2 | 2 | 3 |  | 6 | 3 | 0 |  |  |  |
|  | 4 | **Exterior Equipment Cell 4** |  | 2020-09-28 | 2021-06-15 |  |  |  |  |  |  |  |  |  |  |  |  |  |  |  |  |  |  |  |  |
|  | 1 | **Electrical** |  | 2020-09-28 | 2021-05-24 |  |  |  |  |  |  |  |  |  |  |  |  |  |  |  |  |  |  |  |  |
| MWH06.C2.C4000 |  | Electrical Underground Rough-In | 12d | 2020-09-28 A | 2020-10-06 A | MWH06.C2.C2000 | 100% | 2020-11-02 | 2020-11-16 |  | VECA Electric [960 h] | 705 | 2 | 2 | 4 | 2 | 4 | 3 |  |  |  | 100 |  |  |  |
| MWH06.C2.C4040 |  | Exterior Equipment Pads - Electrical | 12d | 2020-10-30 A | 2020-11-05 A | MWH06.C2.C4000 | 100% | 2020-11-02 | 2020-11-16 |  | OLSON [1200 h]; VECA Electric [240 h] | 320 | 2 | 2 | 4 | 2 | 4 | 3 | CONC |  |  | 100 | 1 |  |  |
| MWH06.C2.C4010 |  | Exterior Equipment Pads - for UPM's | 4d | 2020-11-02 A | 2020-11-05 A | MWH06.C2.C4000 SS | 100% | 2020-11-30 | 2020-12-03 |  | OLSON [400 h]; VECA Electric [80 h] | 393 | 2 | 2 | 2 | 2 | 4 | 3 |  |  |  |  |  |  |  |
| MWH06.C2.C4030 |  | Set Electrical Equipment-UPM | 4d | 2020-12-10 A | 2020-12-11 A | MWH06.C2.C4010, MWH06.C2.E1100, MWH06.C2.E1110 | 100% | 2021-01-02 | 2021-01-06 |  | VECA Electric [80 h] | 750 | 3 | 2 | 4 | 2 | 4 | 3 |  | 5 | 4 | 0 |  |  |  |
| MWH06.C2.C4060 |  | Set Exterior Electrical OFCI Equipment - GEN | 5d | 2021-01-22 A | 2021-01-22 A | MWH06.C2.C4040, MWH06.C2.E1180, MWH06.C2.E1190 | 100% | 2021-02-01 | 2021-02-05 |  | VECA Electric [200 h] | 1263 | 4 | 2 | 4 | 2 | 4 | 3 |  | 5 | 4 | 0 |  |  |  |
| MWH06.C2.C4220 |  | Lift & Set MER in Place | 5d | 2021-03-08 A | 2021-03-08 A | MWH-06-02-ROJ-F, MWH06.C2.E1410, MWH06.C2.E1200, MWH06.C2.C4040, MWH06.C2.C3230 | 100% | 2021-03-22 | 2021-03-26 |  | VECA Electric [120 h] | 1264 | 4 | 2 | 4 | 2 | 4 | 3 |  | 5 | 4 | 0 | 4 | 2,3,4 | 2 |
| MWH06.C2.C4250 |  | Steel Support for OH Conductors & Cable Tray Installation | 4d | 2021-03-09 A | 2021-03-17 A | MWH06.C2.C4040, MWH06.C2.C4220, MWH06.C2.C2330 | 100% | 2021-03-27 | 2021-03-31 |  | Steel [160 h] | 809 | 3 | 2 | 3 | 2 | 4 | 3 |  | 5 | 2 |  |  |  |  |
| MWH06.C2.C4280 |  | Assemble MER & Complete Shipping Split (SE) | 10d | 2021-03-09 A | 2021-03-29 A | MWH06.C2.C4220 | 100% | 2021-03-27 | 2021-04-07 |  |  | 1268 | 2 | 2 |  | 2 | 4 | 3 |  | 5 | 4 |  | 4 | 2,3,4 | 2 |
| MWH06.C2.C4310 |  | GEN & UPM to MER Cable Bus Instal | 10d | 2021-03-18 A | 2021-04-08 A | MWH06.C2.C4250, MWH06.C2.C4280, MWH06-9938, MWH06.C2.C4060, MWH06-10310 | 100% | 2021-04-15 | 2021-04-26 |  | VECA Electric [560 h] | 1266 | 2 | 2 | 4 | 2 | 4 | 3 |  | 5 | 4 | 0 |  | 2,3,4 | 2 |
| MWH06-10360 |  | Generator & Utility Power Pull | 4d | 2021-04-09 A | 2021-04-15 A | MWH06-10419, MWH06.D6.C2.C4150, MWH06.C2.C4250, MWH06.C2.C4060, MWH06.C2.C2420, MWH06.C2.C4310 | 100% | 2021-05-13 | 2021-05-17 |  | VECA Electric [320 h] | 1265 | 2 | 2 | 4 | 2 | 4 | 3 |  | 6 | 11 | 0 |  | 2,3,4 | 2 |
| MWH06.C2.C4370 |  | Generator & Utility Power Test-Term | 8d | 2021-04-19 A | 2021-04-29 A | MWH06.C2.C4310, MWH06.C2.C4060, MWH06.C2.C4250, MWH06.D6.C2.C4150, MWH06.C2.C2420 FF, MWH06-10360 | 100% | 2021-05-18 | 2021-05-27 |  | VECA Electric [640 h] | 1265 | 2 | 2 | 4 | 2 | 4 | 3 |  | 6 | 11 | 0 |  | 2,3,4 | 2 |
| MWH06.C2.C4380 |  | Electrical Feeders to Mechanical Equipment Pull-Test-Term | 20d | 2021-04-29 A | 2021-05-24 A | MWH06.C2.C4060, MWH06.C2.C4250, MWH06.C2.C4280, MWH06.C2.C4040, MWH06.C2.C4050, MWH06-2527, MWH06.D6.C2.C4130, MWH06-9938, MWH06.C2.C4370 SS+6d, MWH06-9761 SS+8d, MWH06-10531, MWH06-10530 | 100% | 2021-04-30 | 2021-05-25 |  | VECA Electric [1080 h] | 1267 | 2 | 2 | 4 | 2 | 4 | 3 |  | 6 | 11 | 0 |  |  | 2 |

Notes:
- MWH06.C2.C4030: VECA Update Notes: These UPMs will not make this date, still issues with anchors, not preventing MV cable from being pullled
- MWH06-10360: VECA Update Notes: Incentive is on the start and finish of the last Cell in a COLO
- MWH06.C2.C4370: VECA Update Notes: Incentive is on the start and finish of the last Cell in a COLO

| ID | WBS | Activity | Duration | Start | Finish | Predecessors | Complete | Planned start | Planned finish | Resources | MSP Activity ID | HRA - Safety Level | COLO | TRADE | MSFT-Funding Releases | CELL | WBS | HRA - Required Permit- Priority-1 | HRA - Required Permit- Priority-2 | VECA % Complete | VECA- Changed | VECA Update Notes |
| --- | --- | --- | --- | --- | --- | --- | --- | --- | --- | --- | --- | --- | --- | --- | --- | --- | --- | --- | --- | --- | --- | --- |
|  | 2 | **Mechanical** |  | 2020-09-28 | 2021-05-04 |  |  |  |  |  |  |  |  |  |  |  |  |  |  |  |  |  |
| MWH06.C2.C4050 |  | Mechanical/Plumbing Underground Rough-In | 12d | 2020-09-28 A | 2020-10-06 A | MWH06.C2.C2050 | 100% | 2020-11-02 | 2020-11-16 | TCM Mechanical [720 h] | 1269 | 1 | 2 | 51 | 2 | 4 | 3 |  |  |  |  |  |
| MWH06.C2.C4135 |  | Set Gen Stack / Exhaust duct | 3d | 2021-05-01 A | 2021-05-04 A | MWH06.C2.C4060, MWH06-10530 | 100% | 2021-06-01 | 2021-06-03 | TCM Mechanical [60 h]; Steel [120 h] |  | 4 | 2 | 51 |  | 4 | 3 | 5 | 4 |  |  |  |
|  | 3 | **Plumbing** |  |  |  |  |  |  |  |  |  |  |  |  |  |  |  |  |  |  |  |  |
|  | 4 | **Special Systems** |  | 2021-04-01 | 2021-06-15 |  |  |  |  |  |  |  |  |  |  |  |  |  |  |  |  |  |
| MWH06.C2.C4100 |  | Fire Alarm Installation | 12d | 2021-04-01 A | 2021-04-16 A | MWH06.C2.C4060, MWH06.C2.C4040, MWH06.C2.C4050, MWH06-2527, MWH06.C2.C4380 SS+10d | 100% | 2021-05-12 | 2021-05-26 | VECA Electric [240 h] | 138 | 1 | 2 |  | 2 | 4 | 3 | 6 | 3 |  |  |  |
| MWH06.C2.C4400 |  | Controls Installation | 12d | 2021-06-01 A | 2021-06-15 A | MWH06.C2.C4060, MWH06.C2.C4100 SS+5d, MWH06.C2.C4040, MWH06.C2.C4050, MWH06-2527, MWH06-10531, MWH06-10530 | 100% |  |  | VECA Electric [720 h] | 136 | 1 | 2 | 4 | 2 | 4 | 3 | 6 | 3 | 0 | 1 |  |
|  | 5 | **Mechanical Corridor Cell 1** |  | 2021-02-01 | 2021-07-22 |  |  |  |  |  |  |  |  |  |  |  |  |  |  |  |  |  |
|  | 1 | **Electrical** |  | 2021-05-24 | 2021-06-16 |  |  |  |  |  |  |  |  |  |  |  |  |  |  |  |  |  |
| MWH06.C2.C1150 |  | VFD'S Installation & Wiring | 12d | 2021-05-24 A | 2021-06-07 A | MWH06.C2.C1090, MWH06.C2.C1210, MWH06-10531, MWH06-10530 | 100% | 2021-06-01 | 2021-06-15 | VECA Electric [240 h] | 1276 | 1 | 2 | 4 | 2 | 1 | 4 | 3 | 4 | 0 | 1 | No VFDs yet supplied by others |
| MWH06.C2.C1350 |  | Ligthing Installation | 12d | 2021-06-01 A | 2021-06-16 A | MWH06.C2.C1320, MWH06.C2.C1150, MWH06.C2.C1310, MWH06-10531, MWH06-10530 | 100% | 2021-07-23 | 2021-08-06 | VECA Electric [480 h] | 1277 | 1 | 2 | 4 | 2 | 1 | 4 | 3 | 4 | 0 |  |  |
|  | 2 | **Mechanical** |  | 2021-02-01 | 2021-05-14 |  |  |  |  |  |  |  |  |  |  |  |  |  |  |  |  |  |
| MWH06.C2.C1210 |  | AHU/DOAS Equipment Setting | 5d | 2021-02-01 A | 2021-02-05 A | MWH06.C2.C1090, MWH06.C2.E1260, MWH06.C2.E1280 | 100% | 2021-03-01 | 2021-03-05 | TCM Mechanical [480 h] | 1279 | 3 | 2 | 51 | 2 | 1 | 4 |  |  |  |  |  |
| MWH06.C2.C1260 |  | Hydronic Piping Installation | 0d | 2021-05-03 A | 2021-05-14 A | MWH06.C2.C1210, MWH06-10530 | 100% | 2021-05-03 | 2021-05-03 | TCM Mechanical | 1280 | 3 | 2 | 51 | 2 | 1 | 4 | 3 | 4 |  |  |  |
|  | 3 | **Plumbing** |  | 2021-05-01 | 2021-06-15 |  |  |  |  |  |  |  |  |  |  |  |  |  |  |  |  |  |
| MWH06.C2.C1370 |  | Toilet Piping Installation / DW | 12d | 2021-05-01 A | 2021-05-15 A | MWH06.C2.C1310, MWH06-10530 | 100% | 2021-06-01 | 2021-06-15 | TCM Mechanical [480 h] | 157 | 1 | 2 | 51 | 2 | 1 | 4 | 4 | 11 |  |  |  |
| MWH06.C2.C1360 |  | Floor Drain System Installation | 12d | 2021-06-01 A | 2021-06-15 A | MWH06.C2.C1100, MWH06.C2.C1310, MWH06.C2.C1210, MWH06-10530 | 100% | 2021-06-30 | 2021-07-15 |  | 163 | 1 | 2 |  | 2 | 1 | 4 | 6 | 3 |  |  |  |
|  | 4 | **Special Systems** |  | 2021-04-01 | 2021-07-22 |  |  |  |  |  |  |  |  |  |  |  |  |  |  |  |  |  |
| MWH06.C2.C1220 |  | Fire Alarm System | 12d | 2021-04-01 A | 2021-04-16 A | MWH06.C2.C1170 | 100% | 2021-05-15 | 2021-05-29 | VECA Electric [240 h] | 132 | 1 | 2 |  | 2 | 1 | 4 | 6 | 3 |  |  |  |
| MWH06.C2.C1170 |  | Fire Riser Installation | 12d | 2021-05-01 A | 2021-05-15 A | MWH06.C2.C1100, MWH06.C2.C1210, MWH06-10530 | 100% | 2021-06-01 | 2021-06-15 |  | 1283 | 3 | 2 |  | 2 | 1 | 4 | 6 | 3 |  |  |  |
| MWH06.C2.C1320 |  | Controls Installation | 18d | 2021-06-08 A | 2021-07-22 A | MWH06.C2.C1150, MWH06.C2.C1220 FF, MWH06.C1.C4290 FF, MWH06-10531, MWH06-10530 | 100% | 2021-06-08 | 2021-06-29 | VECA Electric [720 h] | 131 | 1 | 2 | 4 | 2 | 1 | 4 | 6 | 3 | 0 | 1 |  |
|  | 6 | **Mechanical Corridor Cell 3** |  | 2021-02-23 | 2021-07-08 |  |  |  |  |  |  |  |  |  |  |  |  |  |  |  |  |  |
|  | 1 | **Electrical** |  | 2021-05-01 | 2021-06-29 |  |  |  |  |  |  |  |  |  |  |  |  |  |  |  |  |  |
| MWH06.C2.C3140 |  | VFD'S Installation & Wiring | 12d | 2021-05-01 A | 2021-05-15 A | MWH06.C2.C3090, MWH06.C2.C3250, MWH06-10531, MWH06-10530 | 100% | 2021-06-01 | 2021-06-15 | VECA Electric [240 h] | 1286 | 1 | 2 | 4 | 2 | 3 | 4 | 3 | 4 | 0 |  |  |
| MWH06.C2.C3390 |  | Ligthing Installation | 12d | 2021-06-17 A | 2021-06-29 A | MWH06.C2.C1350, MWH06.C2.C4400, MWH06-10531, MWH06-10530 | 100% | 2021-08-07 | 2021-08-21 | VECA Electric [480 h] | 1287 | 1 | 2 | 4 | 2 | 3 | 4 | 3 | 4 | 0 |  |  |

| ID | WBS | Activity | Duration | Start | Finish | Predecessors | Complete | Planned start | Planned finish | Resources | MSP Activity ID | HRA - Safety Level | COLO | TRADE | MSFT-Funding Releases | CELL | WBS | HRA - Required Permit- Priority-1 | HRA - Required Permit- Priority-2 | VECA % Complete | VECA- Changed | VECA Update Notes |
| --- | --- | --- | --- | --- | --- | --- | --- | --- | --- | --- | --- | --- | --- | --- | --- | --- | --- | --- | --- | --- | --- | --- |
|  | 2 | **Mechanical** |  | 2021-02-23 | 2021-05-15 |  |  |  |  |  |  |  |  |  |  |  |  |  |  |  |  |  |
| MWH06.C2.C3250 |  | AHU/DOAS Equipment Setting | 5d | 2021-02-23 A | 2021-02-26 A | MWH06.C2.E1320, MWH06.C2.E1340, MWH06.C2.C3190 | 100% | 2021-03-01 | 2021-03-05 | TCM Mechanical [480 h] | 1289 | 3 | 2 | 51 | 2 | 3 | 4 |  |  |  |  |  |
| MWH06.C2.C3320 |  | Hydronic Piping Installation | 12d | 2021-05-01 A | 2021-05-15 A | MWH06.C2.C3250, MWH06-10530 | 100% | 2021-06-01 | 2021-06-15 | TCM Mechanical [480 h] | 1290 | 3 | 2 | 51 | 2 | 3 | 4 | 3 | 4 |  |  |  |
|  | 3 | **Plumbing** |  | 2021-05-17 | 2021-06-15 |  |  |  |  |  |  |  |  |  |  |  |  |  |  |  |  |  |
| MWH06.C2.C3410 |  | Toilet Piping Installation / DW | 12d | 2021-05-17 A | 2021-06-01 A | MWH06.C2.C3350, MWH06-10530 | 100% | 2021-06-30 | 2021-07-15 | TCM Mechanical [480 h] | 155 | 1 | 2 | 51 | 2 | 3 | 4 | 4 | 11 |  |  |  |
| MWH06.C2.C3400 |  | Floor Drain System Installation | 12d | 2021-06-01 A | 2021-06-15 A | MWH06.C2.C3100, MWH06.C2.C3350, MWH06.C2.C3250, MWH06-10530 | 100% | 2021-06-30 | 2021-07-15 |  | 164 | 1 | 2 |  | 2 | 3 | 4 | 6 | 3 |  |  |  |
|  | 4 | **Special Systems** |  | 2021-04-01 | 2021-07-08 |  |  |  |  |  |  |  |  |  |  |  |  |  |  |  |  |  |
| MWH06.C2.C3200 |  | Fire Alarm System | 12d | 2021-04-01 A | 2021-04-16 A | MWH06.C2.C3250 | 100% | 2021-04-30 | 2021-05-14 | VECA Electric [240 h] | 146 | 1 | 2 |  | 2 | 3 | 4 | 6 | 3 |  |  |  |
| MWH06.C2.C3300 |  | Controls Installation | 18d | 2021-05-16 A | 2021-07-08 A | MWH06.C2.C3140, MWH06.C2.C3200, MWH06-10531, MWH06-10530 | 100% | 2021-06-16 | 2021-07-08 | VECA Electric [720 h] | 144 | 1 | 2 | 4 | 2 | 3 | 4 | 6 | 3 | 0 | 1 |  |
|  | 7 | **Mechanical Corridor Cell 2** |  | 2021-02-08 | 2021-07-09 |  |  |  |  |  |  |  |  |  |  |  |  |  |  |  |  |  |
|  | 1 | **Electrical** |  | 2021-05-15 | 2021-06-16 |  |  |  |  |  |  |  |  |  |  |  |  |  |  |  |  |  |
| MWH06.C2.C2130 |  | VFD'S Installation & Wiring | 12d | 2021-05-15 A | 2021-05-29 A | MWH06.C2.C3140 FF, MWH06.C2.C3140, MWH06.C2.C2070, MWH06.C2.C2200, MWH06-10531, MWH06-10530 | 100% | 2021-06-01 | 2021-06-15 | VECA Electric [240 h] | 1296 | 1 | 2 | 4 | 2 | 2 | 4 | 3 | 4 | 0 |  | No VFDs yet supplied by others |
| MWH06.C2.C2440 |  | Ligthing Installation | 12d | 2021-06-01 A | 2021-06-16 A | MWH06.C1.C4480 FS+15d, MWH06.C2.C2130, MWH06-10531, MWH06-10530 | 100% | 2021-07-20 | 2021-08-03 | VECA Electric [480 h] | 1297 | 1 | 2 | 4 | 2 | 2 | 4 | 3 | 4 | 0 |  |  |
|  | 2 | **Mechanical** |  | 2021-02-08 | 2021-05-15 |  |  |  |  |  |  |  |  |  |  |  |  |  |  |  |  |  |
| MWH06.C2.C2200 |  | AHU/DOAS Equipment Setting | 5d | 2021-02-08 A | 2021-02-18 A | MWH06.C2.C2070, MWH06.C2.E1270, MWH06.C2.E1290 | 100% | 2021-03-01 | 2021-03-05 | TCM Mechanical [480 h] | 1299 | 3 | 2 | 51 | 2 | 2 | 4 |  |  |  |  |  |
| MWH06.C2.C2250 |  | Hydronic Piping Installation | 12d | 2021-05-01 A | 2021-05-15 A | MWH06.C2.C2200, MWH06-10530 | 100% | 2021-06-01 | 2021-06-15 | TCM Mechanical [480 h] | 1300 | 3 | 2 | 51 | 2 | 2 | 4 | 3 | 4 |  |  |  |
|  | 3 | **Plumbing** |  | 2021-05-01 | 2021-06-15 |  |  |  |  |  |  |  |  |  |  |  |  |  |  |  |  |  |
| MWH06.C2.C2310 |  | Toilet Piping Installation / DW | 12d | 2021-05-01 A | 2021-05-15 A | MWH06.C2.C2300 SS+6d, MWH06-10530 | 100% | 2021-05-03 | 2021-05-15 | TCM Mechanical [480 h] | 158 | 1 | 2 | 51 | 2 | 2 | 4 | 4 | 11 |  |  |  |
| MWH06.C2.C2360 |  | Floor Drain System Installation | 12d | 2021-06-01 A | 2021-06-15 A | MWH06.C2.C2080 SS+6d, MWH06.C2.C2300, MWH06.C2.C2200, MWH06-10530 | 100% | 2021-06-30 | 2021-07-15 |  | 156 | 1 | 2 |  | 2 | 2 | 4 | 6 | 3 |  |  |  |
|  | 4 | **Special Systems** |  | 2021-04-01 | 2021-07-09 |  |  |  |  |  |  |  |  |  |  |  |  |  |  |  |  |  |
| MWH06.C2.C2210 |  | Fire Alarm System | 12d | 2021-04-01 A | 2021-04-16 A | MWH06.C2.C2200 | 100% | 2021-04-30 | 2021-05-14 | VECA Electric [240 h] | 143 | 1 | 2 |  | 2 | 2 | 4 | 6 | 3 |  |  |  |
| MWH06.C2.C2320 |  | Controls Installation | 18d | 2021-05-24 A | 2021-07-09 A | MWH06.C2.C2130, MWH06.C2.C2210, MWH06-10531, MWH06-10530 | 100% | 2021-06-30 | 2021-07-22 | VECA Electric [720 h] | 145 | 1 | 2 | 4 | 2 | 2 | 4 | 6 | 3 | 0 | 1 |  |
|  | 8 | **Mechanical Corridor Cell 4** |  | 2021-02-19 | 2021-07-22 |  |  |  |  |  |  |  |  |  |  |  |  |  |  |  |  |  |
|  | 1 | **Electrical** |  | 2021-05-01 | 2021-06-29 |  |  |  |  |  |  |  |  |  |  |  |  |  |  |  |  |  |
| MWH06.C2.C4120 |  | VFD'S Installation & Wiring | 12d | 2021-05-01 A | 2021-05-14 A | MWH06.C2.C4070, MWH06.C2.C4190, MWH06-10531, MWH06-10530 | 100% | 2021-06-01 | 2021-06-15 | VECA Electric [240 h] | 1306 | 1 | 2 | 4 | 2 | 4 | 4 | 3 | 4 | 0 |  |  |
| MWH06.C2.C4410 |  | Ligthing Installation | 12d | 2021-06-17 A | 2021-06-29 A | MWH06.C2.C2440, MWH06.C2.C4120, MWH06.C2.C4300, MWH06-10531, MWH06-10530 | 100% | 2021-08-04 | 2021-08-18 | VECA Electric [480 h] | 1307 | 1 | 2 | 4 | 2 | 4 | 4 | 3 | 4 | 0 |  |  |

Notes:
- MWH06.C2.C2440: Notes: 8.17- Added LAG to start in MArch, to help manpower level in FEB

| ID | WBS | Activity | Duration | Start | Finish | Predecessors | Complete | Planned start | Planned finish | Constraint | Resources | MSP Activity ID | HRA - Safety Level | COLO | TRADE | MSFT-Funding Releases | CELL | WBS | HRA - Required Permit- Priority-1 | HRA - Required Permit- Priority-2 | VECA % Complete | VECA- Changed | MWH06- TRADES | Critical Path mer to COLO |
| --- | --- | --- | --- | --- | --- | --- | --- | --- | --- | --- | --- | --- | --- | --- | --- | --- | --- | --- | --- | --- | --- | --- | --- | --- |
|  | 2 | **Mechanical** |  | 2021-02-19 | 2021-05-15 |  |  |  |  |  |  |  |  |  |  |  |  |  |  |  |  |  |  |  |
| MWH06.C2.C4190 |  | AHU/DOAS Equipment Setting | 5d | 2021-02-19 A | 2021-02-22 A | MWH06.C2.C4070, MWH06.C2.E1330, MWH06.C2.E1350 | 100% | 2021-03-01 | 2021-03-05 |  | TCM Mechanical [480 h] | 1309 | 3 | 2 | 51 | 2 | 4 | 4 |  |  |  |  |  |  |
| MWH06.C2.C4270 |  | Hydronic Piping Installation | 12d | 2021-05-01 A | 2021-05-15 A | MWH06.C2.C4190, MWH06-10530 | 100% | 2021-06-01 | 2021-06-15 |  | TCM Mechanical [480 h] | 1310 | 3 | 2 | 51 | 2 | 4 | 4 | 3 | 4 |  |  |  |  |
|  | 3 | **Plumbing** |  | 2021-05-17 | 2021-06-15 |  |  |  |  |  |  |  |  |  |  |  |  |  |  |  |  |  |  |  |
| MWH06.C2.C4350 |  | Toilet Piping Installation / DW | 12d | 2021-05-17 A | 2021-06-01 A | MWH06.C2.C4300, MWH06-10530 | 100% | 2021-06-30 | 2021-07-15 |  | TCM Mechanical [480 h] | 165 | 1 | 2 | 51 | 2 | 4 | 4 | 4 | 11 |  |  |  |  |
| MWH06.C2.C4340 |  | Floor Drain System Installation | 12d | 2021-06-01 A | 2021-06-15 A | MWH06.C2.C4080, MWH06.C2.C4300, MWH06.C2.C4190, MWH06-10530 | 100% | 2021-06-30 | 2021-07-15 |  |  | 154 | 1 | 2 |  | 2 | 4 | 4 | 6 | 3 |  |  |  |  |
|  | 4 | **Special Systems** |  | 2021-04-01 | 2021-07-22 |  |  |  |  |  |  |  |  |  |  |  |  |  |  |  |  |  |  |  |
| MWH06.C2.C4160 |  | Fire Alarm System | 12d | 2021-04-01 A | 2021-04-16 A | MWH06.C2.C2210, MWH06.C2.C4190 | 100% | 2021-05-15 | 2021-05-29 |  | VECA Electric [240 h] | 133 | 1 | 2 |  | 2 | 4 | 4 | 6 | 3 |  |  |  |  |
| MWH06.C2.C4260 |  | Controls Installation | 18d | 2021-04-30 A | 2021-07-22 A | MWH06.C2.C4160, MWH06-10531, MWH06-10530 | 100% | 2021-06-01 | 2021-06-22 |  | VECA Electric [720 h] | 137 | 1 | 2 | 4 | 2 | 4 | 4 | 6 | 3 | 0 | 1 |  |  |
|  | 9 | **Data Hall Cell 1** |  | 2021-01-18 | 2021-08-19 |  |  |  |  |  |  |  |  |  |  |  |  |  |  |  |  |  |  |  |
|  | 1 | **Electrical** |  | 2021-01-18 | 2021-06-16 |  |  |  |  |  |  |  |  |  |  |  |  |  |  |  |  |  |  |  |
| MWH06.C2.C1180 |  | HAC Installation | 12d | 2021-01-18 A | 2021-01-29 A | MWH06.C2.C1140, MWH06.C2.C1110 | 100% | 2021-02-01 | 2021-02-15 | start on or after 2021-01-04 | TCM Mechanical [480 h] | 1318 | 4 | 2 | 51 | 2 | 1 | 5 | 4 | 11 |  |  | 26 |  |
| MWH06.C2.C1230 |  | Cable Tray Installation | 12d | 2021-02-05 A | 2021-02-22 A | MWH06.C2.C1180 SS, MWH06.C1.C3190 | 100% | 2021-03-01 | 2021-03-13 |  | VECA Electric [1440 h] | 1317 | 2 | 2 | 4 | 2 | 1 | 5 | 3 | 4 | 0 |  |  |  |
| MWH06.C2.C1270 |  | Power Bus Installation | 10d | 2021-03-10 A | 2021-03-19 A | MWH06.C2.C1230, MWH06.C2.C1180, MWH06.C1.C3220, MWH06-10276 | 100% | 2021-03-26 | 2021-04-06 |  | VECA Electric | 478 | 2 | 2 | 4 | 2 | 1 | 5 | 4 | 11 | 0 |  |  |  |
| MWH06-9775 |  | Below Ceiling Branch Conduit Rough-in | 6d | 2021-03-15 A | 2021-03-19 A | MWH06.C2.C1180, MWH06.C2.C1270 | 100% | 2021-03-31 | 2021-04-06 |  | VECA Electric | 1160 | 1 | 2 | 4 | 2 | 1 | 1 | 3 | 4 |  |  |  |  |
| MWH06.C2.C1300 |  | PDU's Installation | 3d | 2021-03-19 A | 2021-03-22 A | MWH06.C2.C1270 SS, MWH06.C2.C1230, MWH06.C2.C1140, MWH06.C2.E1370 SS, MWH06.C2.E1380 | 100% | 2021-03-26 | 2021-03-29 |  | VECA Electric [180 h] | 1316 | 3 | 2 | 4 | 2 | 1 | 5 | 11 |  | 0 |  | 26 |  |
| MWH06.C2.C1420 |  | Light Fixtures Installation | 12d | 2021-04-30 A | 2021-06-15 A | MWH06.C2.C1300, MWH06-10531, MWH06-10530 | 100% | 2021-06-01 | 2021-06-15 | start on or after 2021-04-29 | VECA Electric [480 h] | 162 | 2 | 2 | 4 | 2 | 1 | 5 | 3 | 4 | 3.9621710018821941 | 1 |  |  |
| MWH06.C2.C1460 |  | Pull/term/Test PDU to Power bus | 18d | 2021-05-11 A | 2021-06-02 A | MWH06-10393, MWH06.C2.C1300, MWH06.C2.C1270, MWH06-10531, MWH06-10530 | 100% | 2021-06-02 | 2021-06-23 |  | VECA Electric [1440 h] | 1219 | 2 | 2 | 4 | 2 | 1 | 3 | 4 | 11 | 0 | 1 | 26 | 2 |
| MWH06.C2.C1390 |  | Pull / Term / Test Conductors ( MER to PDU) | 21d | 2021-05-12 A | 2021-06-16 A | MWH06-10444 FF+8d, MWH06-10393, MWH06.C2.C1300 FF+8d, MWH06.D6.C2.C1120, MWH06.D6.C2.C1130, MWH06.C2.C1410, MWH06.D6.C2.C1120 FF, MWH06.C2.C1430 SS+7d, MWH06-9758, MWH06.D6.C2.C1160, MWH06-10283, MWH06-10531, MWH06-10530 | 100% | 2021-06-03 | 2021-06-28 |  | VECA Electric [1680 h] | 1319 | 2 | 2 | 4 | 2 | 1 | 5 | 6 | 4 | 0 | 1 | 26 |  |
|  | 2 | **Fiber** |  | 2021-05-20 | 2021-08-19 |  |  |  |  |  |  |  |  |  |  |  |  |  |  |  |  |  |  |  |
| MWH06.C2.C1280 |  | EPMS Pull Wire / Term / Test | 12d | 2021-05-20 A | 2021-06-24 A | MWH06.C2.C1230, MWH06.D6.C2.C1130, MWH06-9758, MWH06.D6.C2.C1130 FF, MWH06.C2.C1390 SS+7d, MWH06-10530 | 100% | 2021-06-10 | 2021-06-24 |  | LINX [1440 h] | 1321 | 1 | 2 | 7 | 2 | 1 | 5 | 6 | 7 |  |  |  |  |
| MWH06.C2.C1340 |  | BMS Pull Wire / Term / Test | 12d | 2021-05-20 A | 2021-06-24 A | MWH06.C2.C1280 SS, MWH06-10530 | 100% | 2021-06-10 | 2021-06-24 |  | LINX [1440 h] | 1322 | 1 | 2 | 7 | 2 | 1 | 5 | 6 | 7 |  |  |  |  |
| MWH06.C2.C1440 |  | Install/Dress/Test Production Fiber (Includes MOR rack set & Fiber runner) | 20d | 2021-06-21 A | 2021-08-19 A | MWH06.C1.C3460, MWH06.C2.C1340, MWH06-10530 | 100% | 2021-07-23 | 2021-08-17 |  | LINX [1440 h] | 1323 | 1 | 2 | 7 | 2 | 1 | 5 |  | 4 |  |  |  |  |
|  | 3 | **Special Systems** |  | 2021-04-01 | 2021-06-15 |  |  |  |  |  |  |  |  |  |  |  |  |  |  |  |  |  |  |  |
| MWH06.C2.C1240 |  | Fire Alarm System | 15d | 2021-04-01 A | 2021-04-16 A | MWH06.C2.C1230, MWH06.C1.C3320 | 100% | 2021-05-04 | 2021-05-20 |  | VECA Electric [600 h] | 134 | 1 | 2 |  | 2 | 1 | 5 | 6 | 3 |  |  |  |  |
| MWH06.C2.C1400 |  | Controls Installation | 12d | 2021-06-01 A | 2021-06-15 A | MWH06.C2.C1230, MWH06.C2.C1240, MWH06-10531, MWH06-10530 | 100% |  |  |  | VECA Electric [720 h] | 147 | 1 | 2 | 4 | 2 | 1 | 5 | 6 | 3 | 0 | 1 |  |  |

Notes:
- MWH06.C2.C1420: Notes: 8.17- changed crew size from 8 to 4 and duration from 6 to 12 to level manapower
- MWH06.C2.C1240: Notes: 8.17- Increased Duration to reduce manpower in decemeber. (DRB#2)

| ID | WBS | Activity | Duration | Start | Finish | Predecessors | Complete | Planned start | Planned finish | Constraint | Resources | MSP Activity ID | HRA - Safety Level | COLO | TRADE | MSFT-Funding Releases | CELL | WBS | MWH06- TRADES | HRA - Required Permit- Priority-1 | HRA - Required Permit- Priority-2 | VECA % Complete | VECA- Changed | Critical Path mer to COLO |
| --- | --- | --- | --- | --- | --- | --- | --- | --- | --- | --- | --- | --- | --- | --- | --- | --- | --- | --- | --- | --- | --- | --- | --- | --- |
|  | 10 | **Data Hall Cell 3** |  | 2021-01-25 | 2021-08-19 |  |  |  |  |  |  |  |  |  |  |  |  |  |  |  |  |  |  |  |
|  | 1 | **Electrical** |  | 2021-01-25 | 2021-06-26 |  |  |  |  |  |  |  |  |  |  |  |  |  |  |  |  |  |  |  |
| MWH06.C2.C3170 |  | HAC Installation | 12d | 2021-01-25 A | 2021-02-03 A | MWH06.C2.C3130, MWH06.C2.C3110 | 100% | 2021-02-03 | 2021-02-17 | start on or after 2021-02-03 | TCM Mechanical [480 h] | 1329 | 4 | 2 | 51 | 2 | 3 | 5 | 26 | 4 | 11 |  |  |  |
| MWH06.C2.C3210 |  | Cable Tray Installation | 12d | 2021-02-23 A | 2021-03-08 A | MWH06.C2.C1230, MWH06.C2.C3170 SS | 100% | 2021-03-01 | 2021-03-13 |  | VECA Electric [1440 h] | 1328 | 2 | 2 | 4 | 2 | 3 | 5 |  | 3 | 4 | 0 |  |  |
| MWH06-9776 |  | Below Ceiling Branch Conduit Rough-in | 6d | 2021-03-15 A | 2021-03-20 A | MWH06-9777, MWH06.C2.C3170 | 100% | 2021-04-15 | 2021-04-21 |  | VECA Electric [800 h] | 355 | 1 | 2 | 4 | 2 | 3 | 1 |  | 3 | 4 |  |  |  |
| MWH06.C2.C3260 |  | Power Bus Installation | 10d | 2021-03-20 A | 2021-04-24 A | MWH06.C2.C3210, MWH06.C2.C3170, MWH06.C2.C1270 | 100% | 2021-03-22 | 2021-04-01 |  | VECA Electric [1200 h] | 480 | 2 | 2 | 4 | 2 | 3 | 5 |  | 4 | 11 | 0 |  |  |
| MWH06.C2.C3290 |  | PDU's Installation | 3d | 2021-05-03 A | 2021-05-05 A | MWH06.C2.C3260, MWH06.C2.C3260 SS, MWH06.C2.C3210, MWH06.C2.C3130, MWH06.C2.E1420, MWH06.C2.E1430, MWH06-10531, MWH06-10530 | 100% | 2021-06-01 | 2021-06-03 |  | VECA Electric [180 h] | 1327 | 3 | 2 | 4 | 2 | 3 | 5 | 26 | 11 |  | 0 |  |  |
| MWH06.C2.C3450 |  | Pull/term/Test PDU to Power bus | 18d | 2021-05-26 A | 2021-06-17 A | MWH06-10394, MWH06.C2.C3290, MWH06.C2.C3260, MWH06-10531, MWH06-10530 | 100% | 2021-06-08 | 2021-06-29 |  | VECA Electric [1440 h] | 1237 | 2 | 2 | 4 | 2 | 3 | 3 | 26 | 4 | 11 | 0 | 1 | 2 |
| MWH06.C2.C3360 |  | Pull / Term / Test Conductors ( MER to PDU) | 21d | 2021-05-27 A | 2021-06-22 A | MWH06-10446 FF+8d, MWH06-10394, MWH06.C2.C3290 FF+8d, MWH06.D6.C2.C3120, MWH06.D6.C2.C3130, MWH06.C2.C3380, MWH06.D6.C2.C3120 FF, MWH06.C2.C3430 SS+7d, MWH06-9759 SS+8d, MWH06.D6.C2.C3160, MWH06-10531, MWH06-10530 | 100% | 2021-06-08 | 2021-07-02 |  | VECA Electric [1680 h] | 1330 | 2 | 2 | 4 | 2 | 3 | 5 | 26 | 6 | 4 | 0 | 1 |  |
| MWH06.C2.C3420 |  | Light Fixtures Installation | 12d | 2021-06-23 A | 2021-06-26 A | MWH06.C2.C3360, MWH06.C2.C3290, MWH06-10531, MWH06-10530 | 100% | 2021-06-23 | 2021-07-08 |  | VECA Electric [480 h] | 160 | 2 | 2 | 4 | 2 | 3 | 5 |  | 3 | 4 | 0 | 1 |  |
|  | 2 | **Fiber** |  | 2021-06-05 | 2021-08-19 |  |  |  |  |  |  |  |  |  |  |  |  |  |  |  |  |  |  |  |
| MWH06.C2.C3280 |  | EPMS Pull Wire / Term / Test | 12d | 2021-06-05 A | 2021-06-19 A | MWH06.C2.C3210, MWH06.D6.C2.C3130, MWH06.C2.C3360 SS+7d, MWH06-10530 | 100% | 2021-06-28 | 2021-07-13 |  | LINX [1440 h] | 1333 | 1 | 2 | 7 | 2 | 3 | 5 |  | 6 | 7 |  |  |  |
| MWH06.C2.C3330 |  | BMS Pull Wire / Term / Test | 12d | 2021-06-05 A | 2021-06-19 A | MWH06.C2.C3280 SS, MWH06-10530 | 100% | 2021-06-28 | 2021-07-13 |  | LINX [1440 h] | 1334 | 1 | 2 | 7 | 2 | 3 | 5 |  | 6 | 7 |  |  |  |
| MWH06.C2.C3460 |  | Install/Dress/Test Production Fiber (Includes MOR rack set & Fiber runner) | 20d | 2021-06-21 A | 2021-08-19 A | MWH06.C2.C1440 FF, MWH06.C2.C3330, MWH06-10530 | 100% | 2021-08-09 | 2021-09-01 |  | LINX [1440 h] | 1335 | 1 | 2 | 7 | 2 | 3 | 5 |  |  | 4 |  |  |  |
|  | 3 | **Special Systems** |  | 2021-04-01 | 2021-06-15 |  |  |  |  |  |  |  |  |  |  |  |  |  |  |  |  |  |  |  |
| MWH06.C2.C3220 |  | Fire Alarm System | 10d | 2021-04-01 A | 2021-04-16 A | MWH06.C2.C3210 FS+6d, MWH06.C2.C1240 | 100% | 2021-05-21 | 2021-06-03 |  | VECA Electric [600 h] | 1337 | 1 | 2 |  | 2 | 3 | 5 |  | 6 | 3 |  |  |  |
| MWH06.C2.C3370 |  | Controls Installation | 12d | 2021-06-01 A | 2021-06-15 A | MWH06.C2.C3210, MWH06.C2.C3220, MWH06-10531, MWH06-10530 | 100% |  |  |  | VECA Electric [720 h] | 1331 | 1 | 2 | 4 | 2 | 3 | 5 |  | 6 | 3 | 0 | 1 |  |
|  | 11 | **Data Hall Cell 2** |  | 2021-01-18 | 2021-08-19 |  |  |  |  |  |  |  |  |  |  |  |  |  |  |  |  |  |  |  |
|  | 1 | **Electrical** |  | 2021-01-18 | 2021-07-01 |  |  |  |  |  |  |  |  |  |  |  |  |  |  |  |  |  |  |  |
| MWH06.C2.C2160 |  | HAC Installation | 12d | 2021-01-18 A | 2021-01-29 A | MWH06.C2.C2120, MWH06.C2.C2100 | 100% | 2021-02-01 | 2021-02-15 | start on or after 2021-01-04 | TCM Mechanical [480 h] | 1342 | 4 | 2 | 51 | 2 | 2 | 5 | 26 | 4 | 11 |  |  |  |
| MWH06.C2.C2220 |  | Cable Tray Installation | 12d | 2021-02-08 A | 2021-02-23 A | MWH06.C2.C2160 SS, MWH06.C1.C4180 | 100% | 2021-03-01 | 2021-03-13 |  | VECA Electric [1440 h] | 1341 | 2 | 2 | 4 | 2 | 2 | 5 |  | 3 | 4 | 0 |  |  |
| MWH06.C2.C2260 |  | Power Bus Installation | 10d | 2021-03-11 A | 2021-03-20 A | MWH06.C2.C2220, MWH06.C1.C4210, MWH06-10277 | 100% | 2021-03-26 | 2021-04-06 |  | VECA Electric [1200 h] | 482 | 2 | 2 | 4 | 2 | 2 | 5 |  | 4 | 11 | 0 |  |  |
| MWH06-9777 |  | Below Ceiling Branch Conduit Rough-in | 6d | 2021-03-15 A | 2021-03-20 A | MWH06-9775, MWH06.C2.C2160 | 100% | 2021-04-07 | 2021-04-14 |  | VECA Electric [800 h] | 1173 | 1 | 2 | 4 | 2 | 2 | 1 |  | 3 | 4 |  |  |  |
| MWH06.C2.C2280 |  | PDU's Installation | 3d | 2021-03-19 A | 2021-03-20 A | MWH06.C2.C2260 SS, MWH06.C2.E1390 SS, MWH06.C2.E1400, MWH06.C2.C2120 | 100% | 2021-03-22 | 2021-03-24 |  | VECA Electric [180 h] | 1340 | 3 | 2 | 4 | 2 | 2 | 5 | 26 | 11 |  | 0 |  |  |
| MWH06.C2.C2460 |  | Pull/term/Test PDU to Power bus | 20d | 2021-05-17 A | 2021-06-02 A | MWH06-10396, MWH06.C2.C2280, MWH06.C2.C2260, MWH06-10531, MWH06-10530 | 100% | 2021-06-02 | 2021-06-25 |  | VECA Electric [1440 h] | 1254 | 2 | 2 | 4 | 2 | 2 | 3 | 26 | 4 | 11 | 0 | 1 | 2 |
| MWH06.C2.C2380 |  | Pull / Term / Test Conductors ( MER to PDU) | 21d | 2021-05-21 A | 2021-06-17 A | MWH06-10445 FF+8d, MWH06.C1.C4360, MWH06-10396, MWH06.C2.C2280 FF+8d, MWH06.D6.C2.C2120, MWH06.D6.C2.C2130, MWH06.C2.C2420, MWH06.D6.C2.C2120 FF, MWH06.C2.C2410 SS+7d, MWH06-9760 SS+8d, MWH06.D6.C2.C2170, MWH06-10291, MWH06-10531, MWH06-10530 | 100% | 2021-06-03 | 2021-06-28 |  | VECA Electric [1680 h] | 1343 | 2 | 2 | 4 | 2 | 2 | 5 | 26 | 6 | 4 | 0 | 1 |  |
| MWH06.C2.C2400 |  | Light Fixtures Installation | 12d | 2021-06-18 A | 2021-07-01 A | MWH06.C2.C2380, MWH06.C2.C2280, MWH06-10531, MWH06-10530 | 100% |  |  | start on or after 2021-04-01 | VECA Electric [480 h] | 159 | 2 | 2 | 4 | 2 | 2 | 5 |  | 3 | 4 | -3.7828998117805934E-2 | 1 |  |

Notes:
- MWH06.C2.C3420: Notes: 8.17- changed crew size from 8 to 4 and duration from 6 to 12 to level manapower
- MWH06.C2.C2400: Notes: 8.17- changed crew size from 8 to 4 and duration from 6 to 12 to level manapower

| ID | WBS | Activity | Duration | Start | Finish | Predecessors | Complete | Planned start | Planned finish | Resources | MSP Activity ID | HRA - Safety Level | COLO | TRADE | MSFT-Funding Releases | CELL | WBS | HRA - Required Permit- Priority-1 | HRA - Required Permit- Priority-2 | VECA % Complete | VECA- Changed | MWH06- TRADES | Critical Path mer to COLO | COLO CRITICAL |
| --- | --- | --- | --- | --- | --- | --- | --- | --- | --- | --- | --- | --- | --- | --- | --- | --- | --- | --- | --- | --- | --- | --- | --- | --- |
|  | 2 | **Fiber** |  | 2021-06-01 | 2021-08-19 |  |  |  |  |  |  |  |  |  |  |  |  |  |  |  |  |  |  |  |
| MWH06.C2.C2270 |  | EPMS Pull Wire / Term / Test | 12d | 2021-06-01 A | 2021-06-15 A | MWH06.C2.C2220, MWH06.D6.C2.C2130, MWH06.C2.C2380 SS+7d, MWH06-10530 | 100% | 2021-06-28 | 2021-07-13 | LINX [1440 h] | 1345 | 1 | 2 | 7 | 2 | 2 | 5 | 6 | 7 |  |  |  |  |  |
| MWH06.C2.C2350 |  | BMS Pull Wire / Term / Test | 12d | 2021-06-01 A | 2021-06-15 A | MWH06.C2.C2270 SS, MWH06-10530 | 100% | 2021-06-28 | 2021-07-13 | LINX [1440 h] | 1346 | 1 | 2 | 7 | 2 | 2 | 5 | 6 | 7 |  |  |  |  |  |
| MWH06.C2.C2450 |  | Install/Dress/Test Production Fiber (Includes MOR rack set & Fiber runner) | 20d | 2021-06-21 A | 2021-08-19 A | MWH06.C1.C4460, MWH06.C2.C2350, MWH06-10530 | 100% | 2021-07-30 | 2021-08-23 | LINX [1440 h] | 1347 | 1 | 2 | 7 | 2 | 2 | 5 |  | 4 |  |  |  |  |  |
|  | 3 | **Special Systems** |  | 2021-05-10 | 2021-06-15 |  |  |  |  |  |  |  |  |  |  |  |  |  |  |  |  |  |  |  |
| MWH06.C2.C2240 |  | Fire Alarm System | 10d | 2021-05-10 A | 2021-05-20 A | MWH06.C2.C2220 FS+6d, MWH06.C1.C4310 SS, MWH06-10531, MWH06-10530 | 100% |  |  | VECA Electric [600 h] | 148 | 1 | 2 |  | 2 | 2 | 5 | 6 | 3 |  |  |  |  |  |
| MWH06.C2.C2390 |  | Controls Installation | 12d | 2021-06-01 A | 2021-06-15 A | MWH06.C2.C2220, MWH06.C2.C2240, MWH06-10531, MWH06-10530 | 100% |  |  | VECA Electric [720 h] | 139 | 1 | 2 | 4 | 2 | 2 | 5 | 6 | 3 | 0 | 1 |  |  |  |
|  | 13 | **Data Hall Cell 4** |  | 2021-01-25 | 2021-08-19 |  |  |  |  |  |  |  |  |  |  |  |  |  |  |  |  |  |  |  |
|  | 1 | **Electrical** |  | 2021-01-25 | 2021-07-19 |  |  |  |  |  |  |  |  |  |  |  |  |  |  |  |  |  |  |  |
| MWH06.C2.C4140 |  | HAC Installation | 12d | 2021-01-25 A | 2021-02-02 A | MWH06.C2.C4110, MWH06.C2.C4090 | 100% | 2021-02-01 | 2021-02-15 | TCM Mechanical [480 h] | 1353 | 4 | 2 | 51 | 2 | 4 | 5 | 4 | 11 |  |  | 26 |  |  |
| MWH06.C2.C4170 |  | Cable Tray Installation | 12d | 2021-02-24 A | 2021-03-10 A | MWH06.C2.C2220, MWH06.C2.C4140 SS | 100% | 2021-03-01 | 2021-03-13 | VECA Electric [1440 h] | 1352 | 2 | 2 | 4 | 2 | 4 | 5 | 3 | 4 | 0 |  |  |  |  |
| MWH06.C2.C4210 |  | Power Bus Installation | 10d | 2021-03-20 A | 2021-04-24 A | MWH06.C2.C4170, MWH06.C2.C2260 | 100% | 2021-03-31 | 2021-04-12 | VECA Electric [1200 h] | 484 | 2 | 2 | 4 | 2 | 4 | 5 | 4 | 11 | 0 |  |  |  |  |
| MWH06-9778 |  | Below Ceiling Branch Conduit Rough-in | 6d | 2021-03-22 A | 2021-03-26 A | MWH06-9776, MWH06.C2.C4140 | 100% | 2021-04-22 | 2021-04-28 | VECA Electric [240 h] | 1181 | 1 | 2 | 4 | 2 | 4 | 1 | 3 | 4 |  |  |  |  |  |
| MWH06.C2.C4240 |  | PDU's Installation | 3d | 2021-04-12 A | 2021-04-24 A | MWH06.C2.C4210, MWH06.C2.C4210 SS, MWH06.C2.E1440, MWH06.C2.E1450, MWH06.C2.C4110 | 100% | 2021-04-30 | 2021-05-04 | VECA Electric [180 h] | 1351 | 3 | 2 | 4 | 2 | 4 | 5 | 11 |  | 0 |  | 26 |  |  |
| MWH06.C2.C4390 |  | Pull/term/Test PDU to Power bus | 18d | 2021-05-25 A | 2021-06-16 A | MWH06-10395, MWH06.C2.C4240, MWH06.C2.C4210, MWH06-10531, MWH06-10530 | 100% | 2021-06-08 | 2021-06-29 | VECA Electric [1440 h] | 1270 | 2 | 2 | 4 | 2 | 4 | 3 | 4 | 11 | 0 | 1 | 26 | 2 |  |
| MWH06.C2.C4320 |  | Pull / Term / Test Conductors ( MER to PDU) | 21d | 2021-05-26 A | 2021-06-24 A | MWH06-10447 FF+8d, MWH06-10395, MWH06.C2.C4240 FF+8d, MWH06.D6.C2.C4120, MWH06.D6.C2.C4130, MWH06.C2.C4370, MWH06.C2.C4380 SS+7d, MWH06-9761 SS+8d, MWH06.D6.C2.C4160, MWH06-10531, MWH06-10530 | 100% | 2021-06-09 | 2021-07-06 | VECA Electric [1680 h] | 1354 | 2 | 2 | 4 | 2 | 4 | 5 | 6 | 4 | 0 | 1 | 26 |  | 2,3,4 |
| MWH06.C2.C4360 |  | Light Fixtures Installation | 12d | 2021-06-23 A | 2021-07-19 A | MWH06.C2.C4320, MWH06.C2.C4240, MWH06-10531, MWH06-10530 | 100% | 2021-06-23 | 2021-07-08 | VECA Electric [480 h] | 161 | 2 | 2 | 4 | 2 | 4 | 5 | 3 | 4 | 0 | 1 |  |  |  |
|  | 2 | **Fiber** |  | 2021-06-01 | 2021-08-19 |  |  |  |  |  |  |  |  |  |  |  |  |  |  |  |  |  |  |  |
| MWH06.C2.C4230 |  | EPMS Pull Wire / Term / Test | 12d | 2021-06-01 A | 2021-06-15 A | MWH06.C2.C4170, MWH06.D6.C2.C4130, MWH06.C2.C4320 SS+7d, MWH06-10530 | 100% | 2021-06-29 | 2021-07-14 | LINX [1440 h] | 1356 | 1 | 2 | 7 | 2 | 4 | 5 | 6 | 7 |  |  |  |  |  |
| MWH06.C2.C4290 |  | BMS Pull Wire / Term / Test | 12d | 2021-06-01 A | 2021-06-15 A | MWH06.C2.C4230 SS, MWH06-10530 | 100% | 2021-06-29 | 2021-07-14 | LINX [1440 h] | 1357 | 1 | 2 | 7 | 2 | 4 | 5 | 6 | 7 |  |  |  |  |  |
| MWH06.C2.C4420 |  | ` | 20d | 2021-06-21 A | 2021-08-19 A | MWH06.C2.C2450 FF, MWH06.C2.C4290, MWH06-10530 | 100% | 2021-08-24 | 2021-09-17 | LINX [1440 h] | 1358 | 1 | 2 | 7 | 2 | 4 | 5 |  | 4 |  |  |  |  |  |
|  | 3 | **Special Systems** |  | 2021-04-01 | 2021-07-15 |  |  |  |  |  |  |  |  |  |  |  |  |  |  |  |  |  |  |  |
| MWH06.C2.C4200 |  | Fire Alarm System | 10d | 2021-04-01 A | 2021-04-16 A | MWH06.C2.C4170, MWH06.C2.C2240 | 100% | 2021-05-21 | 2021-06-03 | VECA Electric [600 h] | 149 | 1 | 2 |  | 2 | 4 | 5 | 6 | 3 |  |  |  |  |  |
| MWH06.C2.C4330 |  | Controls Installation | 12d | 2021-05-24 A | 2021-07-15 A | MWH06.C2.C4170, MWH06.C2.C4200, MWH06-10531, MWH06-10530 | 100% | 2021-06-01 | 2021-06-15 | VECA Electric [720 h] | 130 | 1 | 2 | 4 | 2 | 4 | 5 | 6 | 3 | 0 | 1 |  |  |  |

Notes:
- MWH06.C2.C2240: Notes: 8.17- Increased Duration to reduce manpower in decemeber. (DRB#2)
- MWH06.C2.C4360: Notes: 8.17- changed crew size from 8 to 4 and duration from 6 to 12 to level manapower

| ID | WBS | Activity | Duration | Start | Finish | Predecessors | Complete | Planned start | Planned finish | Constraint | Resources | MSP Activity ID | VECA % Complete | HRA - Safety Level | COLO | TRADE | MSFT-Funding Releases | CELL | WBS | HRA - Required Permit- Priority-1 | HRA - Required Permit- Priority-2 | MWH06- TRADES |
| --- | --- | --- | --- | --- | --- | --- | --- | --- | --- | --- | --- | --- | --- | --- | --- | --- | --- | --- | --- | --- | --- | --- |
|  | 8 | **COLO 3 Fitout** |  | 2020-10-12 | 2021-10-08 |  |  |  |  |  |  |  |  |  |  |  |  |  |  |  |  |  |
|  | 3 | **Interior Buildout** |  | 2020-10-28 | 2021-06-01 |  |  |  |  |  |  |  |  |  |  |  |  |  |  |  |  |  |
|  | 1 | **Cell 1 Datahall** |  | 2020-10-28 | 2021-01-26 |  |  |  |  |  |  |  |  |  |  |  |  |  |  |  |  |  |
|  | 1 | **Partitions** |  | 2020-10-28 | 2021-01-26 |  |  |  |  |  |  |  |  |  |  |  |  |  |  |  |  |  |
| MWH06.C3.C1210 |  | Overhead MEPFP Rough-In | 10d | 2020-10-28 A | 2021-01-26 A | MWH06.C3.CS1090, MWH-06-03-SOG-F, MWH-06-03-DRY-F, MWH06-9915 | 100% | 2020-11-16 | 2020-11-30 |  | VECA Electric [400 h] | 1365 | 100 | 2 | 3 | 4 | 2 | 1 | 1 | 3 | 4 |  |
| MWH06.C3.C1090 |  | Frame wall & MEPFP In wall roughin | 5d | 2020-12-11 A | 2020-12-18 A | MWH06.C2.C3030 SS+2d, MWH06.C3.CS1090, MWH06-C3.P1500, MWH06.C2.C3030 | 100% | 2021-01-02 | 2021-01-07 |  | TCM Mechanical [400 h]; VECA Electric [400 h] | 1366 |  | 2 | 3 | 6 | 2 | 1 | 1 | 3 | 4 | 23 |
| MWH06.C3.C1220 |  | Hang drywall / Mud / Tape | 8d | 2020-12-22 A | 2020-12-31 A | MWH06.C3.C1090, MWH06.C3.CS1090, MWH06.C3.C1210 SS+6d, MWH06-9915 | 100% | 2021-01-02 | 2021-01-11 |  | PCI [600 h] | 1364 |  | 2 | 3 | 6 | 2 | 1 | 1 | 3 | 4 |  |
|  | 2 | **Finishes** |  | 2021-01-06 | 2021-01-21 |  |  |  |  |  |  |  |  |  |  |  |  |  |  |  |  |  |
| MWH06.C3.C1260 |  | Datahall Finishes | 12d | 2021-01-06 A | 2021-01-21 A | MWH06.C3.C1220, MWH06.C3.CS1120 | 100% | 2021-01-11 | 2021-01-25 | start on or after 2021-01-04 | PCI [480 h] | 192 |  |  | 3 | 6 | 2 | 1 | 1 | 3 | 4 |  |
|  | 2 | **Cell 3 Datahall** |  | 2020-12-19 | 2021-01-28 |  |  |  |  |  |  |  |  |  |  |  |  |  |  |  |  |  |
|  | 1 | **Partitions** |  | 2020-12-19 | 2021-01-11 |  |  |  |  |  |  |  |  |  |  |  |  |  |  |  |  |  |
| MWH06.C3.C3060 |  | Frame wall & MEPFP In wall roughin | 5d | 2020-12-19 A | 2020-12-24 A | MWH06.C3.C1090 SS+2d | 100% | 2021-01-02 | 2021-01-07 |  | TCM Mechanical [400 h]; VECA Electric [400 h] | 1367 |  | 2 | 3 | 6 | 2 | 3 | 1 | 3 | 4 | 23 |
| MWH06.C3.C3180 |  | Overhead MEPFP Rough-In | 10d | 2020-12-21 A | 2021-01-06 A | MWH06.C3.C1210, MWH-06-03-SOG-F, MWH-06-03-DRY-F | 100% |  |  |  | VECA Electric [400 h] | 1372 | 100 | 2 | 3 | 4 | 2 | 3 | 1 | 3 | 4 |  |
| MWH06.C3.C3190 |  | Hang drywall / Mud / Tape | 8d | 2020-12-28 A | 2021-01-11 A | MWH06.C3.C3060, MWH06.C3.CS1090, MWH06-9915 | 100% | 2021-01-14 | 2021-01-23 |  | PCI [600 h] | 1371 |  | 2 | 3 | 6 | 2 | 3 | 1 | 3 | 4 |  |
|  | 2 | **Finishes** |  | 2021-01-08 | 2021-01-28 |  |  |  |  |  |  |  |  |  |  |  |  |  |  |  |  |  |
| MWH06.C3.C3240 |  | Datahall Finishes | 12d | 2021-01-08 A | 2021-01-28 A | MWH06.C3.C3190, MWH06.C3.CS1120 | 100% | 2021-01-11 | 2021-01-25 |  | PCI [480 h] | 218 |  |  | 3 | 6 | 2 | 3 | 1 | 3 | 4 |  |
|  | 3 | **Cell 2 Datahall** |  | 2020-10-28 | 2021-01-21 |  |  |  |  |  |  |  |  |  |  |  |  |  |  |  |  |  |
|  | 1 | **Partitions** |  | 2020-10-28 | 2021-01-14 |  |  |  |  |  |  |  |  |  |  |  |  |  |  |  |  |  |
| MWH06.C3.C2240 |  | Overhead MEPFP Rough-In | 10d | 2020-10-28 A | 2021-01-14 A | MWH06.C3.CS1090, MWH-06-03-SOG-F, MWH-06-03-DRY-F, MWH06-9915 | 100% | 2020-11-16 | 2020-11-30 |  | VECA Electric [400 h] | 1377 | 100 | 2 | 3 | 4 | 2 | 2 | 1 | 3 | 4 |  |
| MWH06.C3.C2090 |  | Frame wall & MEPFP In wall roughin | 5d | 2020-12-11 A | 2020-12-18 A | MWH06.C2.C4020 SS+2d, MWH06.C3.C1090 SS | 100% | 2021-01-02 | 2021-01-07 |  | TCM Mechanical [400 h]; VECA Electric [400 h] | 1378 |  | 2 | 3 | 6 | 2 | 2 | 1 | 3 | 4 | 23 |
| MWH06.C3.C2250 |  | Hang drywall / Mud / Tape | 8d | 2020-12-22 A | 2020-12-31 A | MWH06.C3.C2090, MWH06.C3.CS1090, MWH06.C3.C2240 SS+6d, MWH06-9915 | 100% | 2021-01-08 | 2021-01-18 |  | PCI [600 h] | 1376 |  | 2 | 3 | 6 | 2 | 2 | 1 | 3 | 4 |  |
|  | 2 | **Finishes** |  | 2021-01-06 | 2021-01-21 |  |  |  |  |  |  |  |  |  |  |  |  |  |  |  |  |  |
| MWH06.C3.C2270 |  | Datahall Finishes | 12d | 2021-01-06 A | 2021-01-21 A | MWH06.C3.C2250, MWH06.C3.CS1120 | 100% | 2021-01-11 | 2021-01-25 | start on or after 2021-01-04 | PCI [480 h] | 191 |  |  | 3 | 6 | 2 | 2 | 1 | 3 | 4 |  |
|  | 4 | **Cell 4 Datahall** |  | 2020-12-19 | 2021-01-28 |  |  |  |  |  |  |  |  |  |  |  |  |  |  |  |  |  |
|  | 1 | **Partitions** |  | 2020-12-19 | 2021-01-11 |  |  |  |  |  |  |  |  |  |  |  |  |  |  |  |  |  |
| MWH06.C3.C4060 |  | Frame wall & MEPFP In wall roughin | 5d | 2020-12-19 A | 2020-12-24 A | MWH06.C3.C2090 SS+2d | 100% | 2021-01-02 | 2021-01-07 |  | TCM Mechanical [400 h]; VECA Electric [400 h] | 1379 |  | 2 | 3 | 6 | 2 | 4 | 1 | 3 | 4 | 23 |
| MWH06.C3.C4220 |  | Overhead MEPFP Rough-In | 10d | 2020-12-21 A | 2021-01-07 A | MWH06.C3.C2240, MWH-06-03-SOG-F, MWH-06-03-DRY-F | 100% | 2021-01-15 | 2021-01-27 |  | VECA Electric [400 h] | 1384 | 100 | 2 | 3 | 4 | 2 | 4 | 1 | 3 | 4 |  |
| MWH06.C3.C4230 |  | Hang drywall / Mud / Tape | 8d | 2020-12-28 A | 2021-01-11 A | MWH06.C3.C4060, MWH06.C3.CS1090, MWH06-9915 | 100% | 2021-01-14 | 2021-01-23 |  | PCI [600 h] | 1383 |  | 2 | 3 | 6 | 2 | 4 | 1 | 3 | 4 |  |

Notes:
- MWH06.C3.C1210: VECA Update Notes: Above ceiling grid only CAHU units have been stored in this area and 1.2 were moved out on 12/10. There are still CAHUs stored in this space
- MWH06.C3.C3180: VECA Update Notes: Started as soon as we had access after Cascade completed, some lighting will be added to above ceiling
- MWH06.C3.C2240: VECA Update Notes: Above ceiling grid only Complete enough for ceiling to start
- MWH06.C3.C4220: VECA Update Notes: Started as soon as we had access after Cascade completed, some lighting will be added to above ceiling

| ID | WBS | Activity | Duration | Start | Finish | Predecessors | Complete | Planned start | Planned finish | Resources | MSP Activity ID | COLO | TRADE | MSFT-Funding Releases | CELL | WBS | HRA - Required Permit- Priority-1 | HRA - Required Permit- Priority-2 | VECA % Complete | HRA - Safety Level | MWH06- TRADES | Critical Path-1 |
| --- | --- | --- | --- | --- | --- | --- | --- | --- | --- | --- | --- | --- | --- | --- | --- | --- | --- | --- | --- | --- | --- | --- |
|  | 2 | **Finishes** |  | 2021-01-08 | 2021-01-28 |  |  |  |  |  |  |  |  |  |  |  |  |  |  |  |  |  |
| MWH06.C3.C4260 |  | Datahall Finishes | 12d | 2021-01-08 A | 2021-01-28 A | MWH06.C3.C4230, MWH06.C3.CS1120 | 100% | 2021-01-11 | 2021-01-25 | PCI [480 h] | 204 | 3 | 6 | 2 | 4 | 1 | 3 | 4 |  |  |  |  |
|  | 5 | **Cell 1 Mechanical Corridor** |  | 2020-11-23 | 2021-05-15 |  |  |  |  |  |  |  |  |  |  |  |  |  |  |  |  |  |
|  | 1 | **Partitions** |  | 2020-11-23 | 2021-05-15 |  |  |  |  |  |  |  |  |  |  |  |  |  |  |  |  |  |
| MWH06.C3.C1070 |  | OverHead MEPFP Rough-In | 12d | 2020-11-23 A | 2020-12-28 A | MWH06.C3.CS1090, MWH-06-03-SOG-F, MWH-06-03-DRY-F | 100% | 2020-11-30 | 2020-12-14 | TCM Mechanical [400 h]; VECA Electric [960 h] | 359 | 3 | 4 | 2 | 1 | 2 | 3 | 4 | 0 | 2 | 23 |  |
| MWH06.C3.C1030 |  | Frame & Top out | 8d | 2020-12-03 A | 2020-12-12 A | MWH06.C3.C1090 SS, MWH06.C3.CS1090 | 100% | 2021-01-02 | 2021-01-11 | PCI [480 h] | 1388 | 3 | 6 | 2 | 1 | 2 | 3 |  |  | 2 |  |  |
| MWH06.C3.C1120 |  | Electrical surface mounted Rough-in Above AHU | 5d | 2021-01-21 A | 2021-01-26 A | MWH06.C3.C1070 | 100% |  |  | VECA Electric [960 h] | 1389 | 3 | 4 | 2 | 1 | 2 | 3 | 11 | 0 | 2 |  |  |
| MWH06-9762 |  | Remaining MER raceway across Mech chase | 0d | 2021-04-30 A | 2021-05-15 A | MWH06.C3.C1030, MWH06.C3.C1140, MWH06-10531, MWH06-10530 | 100% | 2021-05-03 | 2021-05-03 | TCM Mechanical; VECA Electric | 340 | 3 | 4 | 1C | 1 | 2 | 3 |  |  | 2 | 23 | 1 |
|  | 2 | **Finishes** |  | 2020-12-28 | 2021-01-04 |  |  |  |  |  |  |  |  |  |  |  |  |  |  |  |  |  |
| MWH06.C3.C1250 |  | Mechanical Corridor Finishes | 18d | 2020-12-28 A | 2021-01-04 A | MWH06.C3.C1120, MWH06.C3.C1030, MWH06.C2.C1360 | 100% | 2021-03-05 | 2021-03-26 | PCI [180 h] | 201 | 3 | 6 | 2 | 1 | 2 |  |  |  | 1 |  |  |
|  | 6 | **Cell 3 Mechanical Corridor** |  | 2020-12-14 | 2021-06-01 |  |  |  |  |  |  |  |  |  |  |  |  |  |  |  |  |  |
|  | 1 | **Partitions** |  | 2020-12-14 | 2021-06-01 |  |  |  |  |  |  |  |  |  |  |  |  |  |  |  |  |  |
| MWH06.C3.C3030 |  | Frame & Top out | 8d | 2020-12-14 A | 2020-12-19 A | MWH06.C3.CS1090, MWH06.C3.C1030 | 100% | 2021-01-12 | 2021-01-21 | PCI [480 h] | 1393 | 3 | 6 | 2 | 3 | 2 | 3 |  |  | 2 |  |  |
| MWH06.C3.C3090 |  | OverHead MEPFP Rough-In | 12d | 2020-12-14 A | 2020-12-28 A | MWH06.C3.C1070, MWH-06-03-SOG-F, MWH-06-03-DRY-F | 100% | 2021-01-13 | 2021-01-27 | TCM Mechanical [400 h]; VECA Electric [960 h] | 361 | 3 | 4 | 2 | 3 | 2 | 3 | 4 | 0 | 2 | 23 |  |
| MWH06.C3.C3120 |  | Electrical surface mounted Rough-in Above AHU | 5d | 2021-02-04 A | 2021-02-11 A | MWH06.C3.C3090 FF, MWH06.C3.C3090 | 100% | 2021-03-01 | 2021-03-05 | VECA Electric [960 h] | 1394 | 3 | 4 | 2 | 3 | 2 | 3 | 11 | 0 | 2 |  |  |
| MWH06-9763 |  | Remaining MER raceway across Mech chase | 13d | 2021-05-17 A | 2021-06-01 A | MWH06-9762, MWH06.C3.C3030, MWH06.C3.C1140, MWH06-10531, MWH06-10530 | 100% | 2021-06-17 | 2021-07-01 | TCM Mechanical [400 h]; VECA Electric [300 h] | 340 | 3 | 4 | 1C | 1 | 2 | 3 |  |  | 2 | 23 | 1 |
|  | 2 | **Finishes** |  | 2020-12-28 | 2021-01-04 |  |  |  |  |  |  |  |  |  |  |  |  |  |  |  |  |  |
| MWH06.C3.C3160 |  | Mechanical Corridor Finishes | 18d | 2020-12-28 A | 2021-01-04 A | MWH06.C3.C3120, MWH06.C3.C3030 | 100% | 2021-02-03 | 2021-02-24 | PCI [180 h] | 219 | 3 | 6 | 2 | 3 | 2 |  |  |  | 1 |  |  |
|  | 7 | **Cell 2 Mechanical Corridor** |  | 2020-11-23 | 2021-05-15 |  |  |  |  |  |  |  |  |  |  |  |  |  |  |  |  |  |
|  | 1 | **Partitions** |  | 2020-11-23 | 2021-05-15 |  |  |  |  |  |  |  |  |  |  |  |  |  |  |  |  |  |
| MWH06.C3.C2070 |  | OverHead MEPFP Rough-In | 12d | 2020-11-23 A | 2020-12-28 A | MWH06.C3.C2030, MWH-06-03-SOG-F, MWH-06-03-DRY-F | 100% | 2021-01-12 | 2021-01-26 | TCM Mechanical [400 h]; VECA Electric [960 h] | 363 | 3 | 4 | 2 | 2 | 2 | 3 | 4 | 0 | 2 | 23 |  |
| MWH06.C3.C2030 |  | Frame & Top out | 8d | 2020-12-03 A | 2020-12-12 A | MWH06.C3.C2090 SS, MWH06.C3.CS1090 | 100% | 2021-01-02 | 2021-01-11 | PCI [480 h] | 1398 | 3 | 6 | 2 | 2 | 2 | 3 |  |  | 2 |  |  |
| MWH06.C3.C2120 |  | Electrical surface mounted Rough-in Above AHU | 5d | 2021-01-25 A | 2021-01-28 A | MWH06.C3.C2070 | 100% | 2021-02-01 | 2021-02-05 | VECA Electric [960 h] | 1399 | 3 | 4 | 2 | 2 | 2 | 3 | 11 | 9.9690594059405946 | 2 |  |  |
| MWH06-9764 |  | Remaining MER raceway across Mech chase | 13d | 2021-04-30 A | 2021-05-15 A | MWH06.C3.C2030, MWH06.C3.C2140, MWH06-10531, MWH06-10530 | 100% | 2021-05-03 | 2021-05-17 | TCM Mechanical [400 h]; VECA Electric [300 h] | 340 | 3 | 4 | 1C | 1 | 2 | 3 |  |  | 2 | 23 | 1 |

Notes:
- MWH06.C3.C1070: VECA Update Notes: Mech Piping and duct work needs to be completed prior to this starting, as well as drywall, tape and paint.
- MWH06.C3.C1120: VECA Update Notes: Drywall just starting in mech chase side colo 3 cell 1 and 2 today 12/14/20.
- MWH06.C3.C3090: VECA Update Notes: Drywall just starting in mech chase side colo 3 cell 1 and 2 today 12/14/20.
- MWH06.C3.C2070: VECA Update Notes: Drywall just starting in mech chase side colo 3 cell 1 and 2 today 12/14/20.

| ID | WBS | Activity | Duration | Start | Finish | Predecessors | Complete | Planned start | Planned finish | Resources | MSP Activity ID | HRA - Safety Level | COLO | TRADE | MSFT-Funding Releases | CELL | WBS | HRA - Required Permit- Priority-1 | VECA % Complete | MWH06- TRADES | HRA - Required Permit- Priority-2 | Critical Path-1 | VECA- Changed | Discipline | MER | Critical Path mer to COLO |
| --- | --- | --- | --- | --- | --- | --- | --- | --- | --- | --- | --- | --- | --- | --- | --- | --- | --- | --- | --- | --- | --- | --- | --- | --- | --- | --- |
|  | 2 | **Finishes** |  | 2020-12-28 | 2021-01-04 |  |  |  |  |  |  |  |  |  |  |  |  |  |  |  |  |  |  |  |  |  |
| MWH06.C3.C2200 |  | Mechanical Corridor Finishes | 18d | 2020-12-28 A | 2021-01-04 A | MWH06.C3.C2120, MWH06.C3.C2030 | 100% | 2021-02-02 | 2021-02-23 | PCI [180 h] | 215 | 1 | 3 | 6 | 2 | 2 | 2 |  |  |  |  |  |  |  |  |  |
|  | 8 | **Cell 4 Mechanical Corridor** |  | 2020-12-14 | 2021-06-01 |  |  |  |  |  |  |  |  |  |  |  |  |  |  |  |  |  |  |  |  |  |
|  | 1 | **Partitions** |  | 2020-12-14 | 2021-06-01 |  |  |  |  |  |  |  |  |  |  |  |  |  |  |  |  |  |  |  |  |  |
| MWH06.C3.C4030 |  | Frame & Top out | 8d | 2020-12-14 A | 2020-12-19 A | MWH06.C3.CS1090, MWH06.C3.C2030 | 100% | 2021-01-12 | 2021-01-21 | PCI [480 h] | 1403 | 2 | 3 | 6 | 2 | 4 | 2 | 3 |  |  |  |  |  |  |  |  |
| MWH06.C3.C4110 |  | OverHead MEPFP Rough-In | 12d | 2020-12-14 A | 2020-12-28 A | MWH06.C3.C2120, MWH06.C3.C2070, MWH-06-03-SOG-F, MWH-06-03-DRY-F | 100% | 2021-01-08 | 2021-01-22 | TCM Mechanical [400 h]; VECA Electric [960 h] | 365 | 2 | 3 | 4 | 2 | 4 | 2 | 3 | 0 | 23 | 4 |  |  |  |  |  |
| MWH06.C3.C4150 |  | Electrical surface mounted Rough-in Above AHU | 5d | 2021-01-25 A | 2021-01-29 A | MWH06.C3.C4110 | 100% | 2021-02-01 | 2021-02-05 | VECA Electric [960 h] | 1404 | 2 | 3 | 4 | 2 | 4 | 2 | 3 | 9.9690594059405946 |  | 11 |  |  |  |  |  |
| MWH06-9765 |  | Remaining MER raceway across Mech chase | 13d | 2021-05-17 A | 2021-06-01 A | MWH06-9764, MWH06.C3.C4030, MWH06.C3.C2140, MWH06-10531, MWH06-10530 | 100% | 2021-06-17 | 2021-07-01 | TCM Mechanical [400 h]; VECA Electric [300 h] | 340 | 2 | 3 | 4 | 1C | 1 | 2 | 3 |  | 23 |  | 1 | 2 |  |  |  |
|  | 2 | **Finishes** |  | 2020-12-28 | 2021-01-04 |  |  |  |  |  |  |  |  |  |  |  |  |  |  |  |  |  |  |  |  |  |
| MWH06.C3.C4200 |  | Mechanical Corridor Finishes | 18d | 2020-12-28 A | 2021-01-04 A | MWH06.C3.C4150, MWH06.C3.C4030 | 100% | 2021-02-23 | 2021-03-16 | PCI [180 h] | 217 | 1 | 3 | 6 | 2 | 4 | 2 |  |  |  |  |  |  |  |  |  |
|  | 4 | **Systems Buildout** |  | 2020-10-12 | 2021-10-08 |  |  |  |  |  |  |  |  |  |  |  |  |  |  |  |  |  |  |  |  |  |
|  | 1 | **Exterior Equipment Cell 1** |  | 2020-10-12 | 2021-07-19 |  |  |  |  |  |  |  |  |  |  |  |  |  |  |  |  |  |  |  |  |  |
|  | 1 | **Electrical** |  | 2020-10-12 | 2021-06-18 |  |  |  |  |  |  |  |  |  |  |  |  |  |  |  |  |  |  |  |  |  |
| MWH06.C3.C1010 |  | Electrical Underground Rough-In | 12d | 2020-10-12 A | 2020-10-21 A | MWH06.C2.C3010, MWH06.C3.CS1060, MWH06-9914 | 100% | 2020-11-02 | 2020-11-16 | VECA Electric [960 h] | 52 | 2 | 3 | 4 | 2 | 1 | 3 |  | 100 |  |  |  |  |  |  |  |
| MWH06.C3.C1020 |  | Exterior Equipment Pads - for UPM's | 4d | 2020-11-30 A | 2020-12-02 A | MWH06.C2.C3020, MWH06.C3.C1010 SS | 100% | 2021-01-02 | 2021-01-06 | OLSON [400 h]; VECA Electric [80 h] | 396 | 2 | 3 | 2 | 2 | 1 | 3 | 1 |  |  | 4 |  |  |  |  |  |
| MWH06.C3.C1050 |  | Exterior Equipment Pads - Electrical | 0d | 2020-11-30 A | 2020-11-30 A | MWH06.C2.C3050 SS+6d, MWH06.C3.C1010 | 100% | 2021-01-02 | 2021-01-02 | OLSON; VECA Electric | 198 | 2 | 3 | 4 | 2 | 1 | 3 | 1 | 100 |  | 4 |  |  | CONC | 1 |  |
| MWH06.C3.C1040 |  | Set Electrical Equipment-UPM | 4d | 2020-12-29 A | 2020-12-30 A | MWH06.C3.C1020, MWH06.C3.E1000, MWH06.C3.E1010, MWH06-9915 | 100% | 2021-01-07 | 2021-01-11 | VECA Electric [80 h] | 765 | 3 | 3 | 4 | 2 | 1 | 3 | 5 | 0 |  | 4 |  |  |  |  |  |
| MWH06.C3.C1110 |  | Set Exterior Electrical OFCI Equipment - GEN | 5d | 2021-03-18 A | 2021-03-18 A | MWH06.C3.C1050, MWH06.C3.E1040, MWH06.C3.E1050 | 100% | 2021-03-01 | 2021-03-05 | VECA Electric [200 h] | 1409 | 4 | 3 | 4 | 2 | 1 | 3 | 5 | 0 |  | 4 |  |  |  |  |  |
| MWH06.C3.C1230 |  | Lift & Set MER in Place | 5d | 2021-04-03 A | 2021-04-03 A | MWH06.C3.E1340, MWH06.C3.E1120, MWH06.C3.C1050, MWH06-C3.P1600, MWH06.C2.C4220 | 100% | 2021-04-26 | 2021-04-30 | VECA Electric [120 h] | 1411 | 4 | 3 | 4 | 2 | 1 | 3 | 5 | 0 |  | 4 |  |  |  | 4 | 3 |
| MWH06.C3.C1240 |  | Steel Support for OH Conductors & Cable Tray Installation | 4d | 2021-04-05 A | 2021-04-09 A | MWH06.C3.C1230, MWH06-10367 | 100% | 2021-04-26 | 2021-04-29 | Steel [160 h] | 1410 | 3 | 3 | 3 | 2 | 1 | 3 | 5 |  |  | 2 |  |  |  |  |  |
| MWH06.C3.C1280 |  | Assemble MER & Complete Shipping Split (SE) | 10d | 2021-04-05 A | 2021-04-12 A | MWH06.C3.C1230 | 100% | 2021-05-03 | 2021-05-13 |  | 1416 | 2 | 3 |  | 2 | 1 | 3 | 5 |  |  | 4 |  |  |  | 4 | 3 |
| MWH06.C3.C1320 |  | GEN & UPM to MER Cable Bus Install | 10d | 2021-04-24 A | 2021-05-07 A | MWH06.C3.C1240, MWH06.C3.C1280, MWH06-9939, MWH06.C3.C1110, MWH06-10311, MWH06-10367, MWH06-10369, MWH06-10568 | 100% | 2021-04-30 | 2021-05-12 | VECA Electric [560 h] | 1413 | 2 | 3 | 4 | 2 | 1 | 3 | 5 | 0 |  | 4 |  |  |  |  | 3 |
| MWH06-10359 |  | Generator & Utility Power Pull | 4d | 2021-05-08 A | 2021-05-13 A | MWH06-10420, MWH06.D6.C3.C1150, MWH06.C2.C3380, MWH06.C3.C1240, MWH06.C3.C1110, MWH06.C3.C1320, MWH06-10367, MWH06-10369, MWH06-10531, MWH06-10530 | 100% | 2021-05-19 | 2021-05-24 | VECA Electric [320 h] | 1412 | 2 | 3 | 4 | 2 | 1 | 3 | 6 | 0 |  | 11 |  |  |  |  | 3 |
| MWH06.C3.C1380 |  | Generator & Utility Power Test-Term | 8d | 2021-05-20 A | 2021-05-31 A | MWH06.C3.C1320, MWH06.C3.C1110, MWH06.C3.C1240, MWH06.D6.C3.C1150, MWH06.C2.C3380, MWH06-10359, MWH06-10367, MWH06-10369, MWH06-10531, MWH06-10530, MWH06-10569 | 100% | 2021-06-02 | 2021-06-10 | VECA Electric [640 h] | 1412 | 2 | 3 | 4 | 2 | 1 | 3 | 6 | 0 |  | 11 |  |  |  |  | 3 |
| MWH06.C3.C1360 |  | Electrical Feeders to Mechanical Equipment Pull-Test-Term | 20d | 2021-05-25 A | 2021-06-18 A | MWH06.C3.C1160, MWH06.C3.C1110, MWH06.C3.C1240, MWH06.C3.C1280, MWH06.D6.C3.C1130, MWH06-9939, MWH06.C3.C1380 SS+4d, MWH06-9762 SS+8d, MWH06-10369, MWH06-10531, MWH06-10530 | 100% | 2021-06-01 | 2021-06-24 | VECA Electric [1080 h] | 1414 | 2 | 3 | 4 | 2 | 1 | 3 | 6 | 0 |  | 11 |  | 1 |  |  | 3 |

Notes:
- MWH06.C3.C1040: VECA Update Notes: These UPMs will not make this date, UPM not onsite yet
- MWH06-10359: VECA Update Notes: Incentive is on the start and finish of the last Cell in a COLO
- MWH06.C3.C1380: VECA Update Notes: Incentive is on the start and finish of the last Cell in a COLO

| ID | WBS | Activity | Duration | Start | Finish | Predecessors | Complete | Planned start | Planned finish | Constraint | Resources | MSP Activity ID | HRA - Safety Level | COLO | TRADE | MSFT-Funding Releases | CELL | WBS | Discipline | HRA - Required Permit- Priority-1 | HRA - Required Permit- Priority-2 | VECA % Complete | VECA- Changed | MER | Critical Path mer to COLO |
| --- | --- | --- | --- | --- | --- | --- | --- | --- | --- | --- | --- | --- | --- | --- | --- | --- | --- | --- | --- | --- | --- | --- | --- | --- | --- |
|  | 2 | **Mechanical** |  | 2020-10-19 | 2021-04-24 |  |  |  |  |  |  |  |  |  |  |  |  |  |  |  |  |  |  |  |  |
| MWH06.C3.C1000 |  | Mechanical/Plumbing Underground Rough-In | 12d | 2020-10-19 A | 2020-10-21 A | MWH06.C2.C1000 | 100% | 2020-11-02 | 2020-11-16 |  | TCM Mechanical [720 h] | 1419 | 1 | 3 | 51 | 2 | 1 | 3 |  |  |  |  |  |  |  |
| MWH06.C3.C1060 |  | Exterior Equipment Pads - Mechanical | 12d | 2020-11-30 A | 2020-12-02 A | MWH06.C3.C1050 SS+6d, MWH06.C3.C1000, MWH06.C2.C1060 | 100% | 2021-01-02 | 2021-01-15 |  | OLSON [1200 h]; VECA Electric [240 h] | 200 | 2 | 3 |  | 2 | 1 | 3 | CONC | 1 | 4 |  |  |  |  |
| MWH06.C3.C1100 |  | Steel Supports for Exterior Mechanical Equipment (Fluid Cooler Steel & Pipe Steel Supports) | 4d | 2020-12-21 A | 2020-12-30 A | MWH06.C3.C1060 | 100% | 2021-01-11 | 2021-01-14 |  | Steel [160 h] | 431 | 3 | 3 | 3 | 2 | 1 | 3 |  | 5 | 2 |  |  |  |  |
| MWH06.C3.C1160 |  | Set Exterior Mechanical OFCI Equipment (FC / WTE / Pumps) | 12d | 2021-01-15 A | 2021-01-15 A | MWH06.C3.C1100, MWH06.C3.E1180, MWH06.C3.E1190, MWH06-C3.P1700 | 100% | 2021-02-01 | 2021-02-15 |  | TCM Mechanical [720 h] | 1415 | 3 | 3 | 51 | 2 | 1 | 3 |  | 5 | 4 |  |  |  |  |
| MWH06.C3.C1161 |  | Set Exterior Water Treatment equipment | 2d | 2021-03-03 A | 2021-03-03 A | MWH06.D5.S1000, MWH06.D5.S1030, MWH06.C3.C1060 | 100% | 2021-03-31 | 2021-04-01 | start on or after 2021-02-24 | TCM Mechanical [120 h] |  | 2 | 3 |  |  | 1 |  |  | 5 | 4 |  |  |  |  |
| MWH06.C3.C1135 |  | Set Gen Stack / Exhaust duct | 3d | 2021-04-06 A | 2021-04-06 A | MWH06.C3.C1110, MWH06-10367, MWH06-10369 | 100% | 2021-04-30 | 2021-05-04 |  | TCM Mechanical [60 h]; Steel [120 h] |  | 4 | 3 | 51 |  | 1 | 3 |  | 5 | 4 |  |  |  |  |
| MWH06.C3.C1170 |  | Mechanical Equipment Piping Connections | 6d | 2021-04-19 A | 2021-04-24 A | MWH06.C3.C1160 SS+5d, MWH06.C3.C1161, MWH06.C3.C1161 FF | 100% | 2021-04-30 | 2021-05-07 |  | TCM Mechanical [720 h] | 1420 | 2 | 3 | 51 | 2 | 1 | 3 |  | 3 | 4 |  |  |  |  |
|  | 3 | **Plumbing** |  |  |  |  |  |  |  |  |  |  |  |  |  |  |  |  |  |  |  |  |  |  |  |
|  | 4 | **Special Systems** |  | 2021-06-19 | 2021-07-19 |  |  |  |  |  |  |  |  |  |  |  |  |  |  |  |  |  |  |  |  |
| MWH06.C3.C1200 |  | Fire Alarm Installation | 12d | 2021-06-19 A | 2021-07-02 A | MWH06.C3.C1160, MWH06.C3.C1110, MWH06.C3.C1360, MWH06.C2.C3220, MWH06-10369, MWH06-10531, MWH06-10530 | 100% | 2021-06-30 | 2021-07-15 |  | VECA Electric [240 h] | 193 | 1 | 3 |  | 2 | 1 | 3 |  | 6 | 3 |  |  |  |  |
| MWH06.C3.C1400 |  | Controls Installation | 12d | 2021-07-06 A | 2021-07-19 A | MWH06.C3.C1110, MWH06.C3.C1160, MWH06.C3.C1200, MWH06.C3.C1360, MWH06.D6.C3.C1170, MWH06-10369, MWH06-10531, MWH06-10530 | 100% |  |  |  | VECA Electric [720 h] | 189 | 1 | 3 | 4 | 2 | 1 | 3 |  | 6 | 3 | 0 | 1 |  |  |
|  | 2 | **Exterior Equipment Cell 3** |  | 2020-10-12 | 2021-08-13 |  |  |  |  |  |  |  |  |  |  |  |  |  |  |  |  |  |  |  |  |
|  | 1 | **Electrical** |  | 2020-10-12 | 2021-08-13 |  |  |  |  |  |  |  |  |  |  |  |  |  |  |  |  |  |  |  |  |
| MWH06.C3.C3010 |  | Electrical Underground Rough-In | 12d | 2020-10-12 A | 2020-10-24 A | MWH06.C3.C1010, MWH06-9914 | 100% | 2020-11-02 | 2020-11-16 |  | VECA Electric [960 h] | 740 | 2 | 3 | 4 | 2 | 3 | 3 |  |  |  | 100 |  |  |  |
| MWH06.C3.C3050 |  | Exterior Equipment Pads - Electrical | 12d | 2020-12-02 A | 2020-12-04 A | MWH06.C3.C1050 SS+6d, MWH06.C3.C1020, MWH06.C3.C3010 | 100% | 2021-01-02 | 2021-01-15 |  | OLSON [1200 h]; VECA Electric [240 h] | 324 | 2 | 3 | 4 | 2 | 3 | 3 | CONC | 1 | 4 | 100 |  | 1 |  |
| MWH06.C3.C3020 |  | Exterior Equipment Pads - for UPM's | 4d | 2020-12-07 A | 2020-12-09 A | MWH06.C3.C1020, MWH06.C3.C3010 SS | 100% | 2021-01-02 | 2021-01-06 |  | OLSON [400 h]; VECA Electric [80 h] | 398 | 2 | 3 | 2 | 2 | 3 | 3 |  | 1 | 4 |  |  |  |  |
| MWH06.C3.C3040 |  | Set Electrical Equipment-UPM | 4d | 2021-01-04 A | 2021-01-04 A | MWH06.C3.C3020, MWH06.C3.E1080, MWH06.C3.E1090 | 100% | 2021-01-11 | 2021-01-14 |  | VECA Electric [80 h] | 755 | 3 | 3 | 4 | 2 | 3 | 3 |  | 5 | 4 | 0 |  |  |  |
| MWH06.C3.C3080 |  | Set Exterior Electrical OFCI Equipment - GEN | 5d | 2021-03-05 A | 2021-03-10 A | MWH06.C3.C3050, MWH06.C3.E1220, MWH06.C3.E1230 | 100% | 2021-03-15 | 2021-03-22 |  | VECA Electric [200 h] | 1425 | 4 | 3 | 4 | 2 | 3 | 3 |  | 5 | 4 | 0 |  |  |  |
| MWH06.C3.C3200 |  | Lift & Set MER in Place | 5d | 2021-04-15 A | 2021-04-15 A | MWH06.C3.E1360, MWH06.C3.E1260, MWH06.C3.C3050, MWH06.C3.C2260 | 100% | 2021-04-30 | 2021-05-06 |  | VECA Electric [120 h] | 1427 | 4 | 3 | 4 | 2 | 3 | 3 |  | 5 | 4 | 0 |  | 4 | 3 |
| MWH06.C3.C3260 |  | Assemble MER & Complete Shipping Split (SE) | 10d | 2021-04-16 A | 2021-05-03 A | MWH06.C3.C3200 | 100% | 2021-05-07 | 2021-05-18 |  |  | 1432 | 2 | 3 |  | 2 | 3 | 3 |  | 5 | 4 |  |  | 4 | 3 |
| MWH06.C3.C3230 |  | Steel Support for OH Conductors & Cable Tray Installation | 4d | 2021-04-30 A | 2021-05-05 A | MWH06.C3.C3050, MWH06.C3.C3200, MWH06.C3.C1240 | 100% | 2021-05-17 | 2021-05-20 |  | Steel [160 h] | 1426 | 3 | 3 | 3 | 2 | 3 | 3 |  | 5 | 2 |  |  |  |  |
| MWH06.C3.C3280 |  | GEN & UPM to MER Cable Bus Instal | 10d | 2021-06-05 A | 2021-06-18 A | MWH06.C3.C3230, MWH06.C3.C3260, MWH06-9941, MWH06.C3.C3080, MWH06-10312, MWH06-10531, MWH06-10530, MWH06-10537 | 100% | 2021-06-01 | 2021-06-11 |  | VECA Electric [560 h] | 1429 | 2 | 3 | 4 | 2 | 3 | 3 |  | 5 | 4 | 0 |  |  | 3 |
| MWH06.C3.C3350 |  | Electrical Feeders to Mechanical Equipment Pull-Test-Term | 20d | 2021-06-08 A | 2021-08-13 A | MWH06-10575, MWH06.C3.C3080, MWH06.C3.C3230, MWH06.C3.C3260, MWH06.C3.C3050 SS, MWH06.C3.C3000, MWH06-2527, MWH06.D6.C3.C3130, MWH06-9941, MWH06.C3.C3330 SS+4d, MWH06-9763 SS+8d, MWH06-10531, MWH06-10530 | 100% | 2021-06-08 | 2021-07-01 |  | VECA Electric [1080 h] | 1430 | 2 | 3 | 4 | 2 | 3 | 3 |  | 6 | 11 | 0 | 1 |  | 3 |
| MWH06-10358 |  | Generator & Utility Power Pull | 4d | 2021-06-19 A | 2021-06-24 A | MWH06-10422, MWH06.D6.C3.C3140, MWH06.C3.C3230, MWH06.C3.C3080, MWH06.C3.C1380, MWH06.C3.C3280, MWH06-10531, MWH06-10530, MWH06-10537, MWH06-10538 FF+2d | 100% | 2021-06-01 | 2021-06-04 |  | VECA Electric [320 h] | 1428 | 2 | 3 | 4 | 2 | 3 | 3 |  | 6 | 11 | 0 | 2 |  | 3 |
| MWH06.C3.C3330 |  | Generator & Utility Power Test-Term | 8d | 2021-06-30 A | 2021-07-16 A | MWH06-10580, MWH06-10574, MWH06.C3.C3280, MWH06.C3.C3080, MWH06.C3.C3230, MWH06.C3.C1380, MWH06.D6.C3.C3140, MWH06.C3.C1380 FF, MWH06-10358, MWH06-10531, MWH06-10530 | 100% | 2021-06-05 | 2021-06-15 |  | VECA Electric [640 h] | 1428 | 2 | 3 | 4 | 2 | 3 | 3 |  | 6 | 11 | 0 | 1 |  | 3 |

Notes:
- MWH06.C3.C3040: VECA Update Notes: UPM not onsite yet
- MWH06-10358: VECA Update Notes: Incentive is on the start and finish of the last Cell in a COLO
- MWH06.C3.C3330: VECA Update Notes: Incentive is on the start and finish of the last Cell in a COLO

| ID | WBS | Activity | Duration | Start | Finish | Predecessors | Complete | Planned start | Planned finish | Constraint | Resources | MSP Activity ID | HRA - Safety Level | COLO | TRADE | MSFT-Funding Releases | CELL | WBS | HRA - Required Permit- Priority-1 | HRA - Required Permit- Priority-2 | VECA % Complete | VECA- Changed | Discipline | MER | Critical Path mer to COLO |
| --- | --- | --- | --- | --- | --- | --- | --- | --- | --- | --- | --- | --- | --- | --- | --- | --- | --- | --- | --- | --- | --- | --- | --- | --- | --- |
|  | 2 | **Mechanical** |  | 2020-10-19 | 2021-04-07 |  |  |  |  |  |  |  |  |  |  |  |  |  |  |  |  |  |  |  |  |
| MWH06.C3.C3000 |  | Mechanical/Plumbing Underground Rough-In | 12d | 2020-10-19 A | 2020-10-24 A | MWH06.C3.C1000 | 100% | 2020-11-02 | 2020-11-16 |  | TCM Mechanical [720 h] | 1431 | 1 | 3 | 51 | 2 | 3 | 3 |  |  |  |  |  |  |  |
| MWH06.C3.C3135 |  | Set Gen Stack / Exhaust duct | 3d | 2021-04-07 A | 2021-04-07 A | MWH06.C3.C3080 | 100% | 2021-04-30 | 2021-05-04 |  | TCM Mechanical [60 h]; Steel [120 h] |  | 4 | 3 | 51 |  | 3 | 3 | 5 | 4 |  |  |  |  |  |
|  | 3 | **Plumbing** |  |  |  |  |  |  |  |  |  |  |  |  |  |  |  |  |  |  |  |  |  |  |  |
|  | 4 | **Special Systems** |  | 2021-06-28 | 2021-07-20 |  |  |  |  |  |  |  |  |  |  |  |  |  |  |  |  |  |  |  |  |
| MWH06.C3.C3110 |  | Fire Alarm Installation | 12d | 2021-06-28 A | 2021-07-15 A | MWH06.C3.C3080, MWH06.C3.C3050 SS, MWH06.C3.C3000, MWH06-2527, MWH06.C3.C3350 SS+5d, MWH06-10531, MWH06-10530 | 100% | 2021-06-28 | 2021-07-13 |  | VECA Electric [240 h] | 1438 | 1 | 3 |  | 2 | 3 | 3 | 6 | 3 |  |  |  |  |  |
| MWH06.C3.C3370 |  | Controls Installation | 12d | 2021-06-29 A | 2021-07-20 A | MWH06.C3.C3080, MWH06.C3.C3110, MWH06.C3.C3050 SS, MWH06.C3.C3000, MWH06-2527, MWH06-10531, MWH06-10530 | 100% | 2021-06-29 | 2021-07-14 |  | VECA Electric [720 h] | 1439 | 1 | 3 | 4 | 2 | 3 | 3 | 6 | 3 | 0 | 1 |  |  |  |
|  | 3 | **Exterior Equipment Cell 2** |  | 2020-10-19 | 2021-07-15 |  |  |  |  |  |  |  |  |  |  |  |  |  |  |  |  |  |  |  |  |
|  | 1 | **Electrical** |  | 2020-10-19 | 2021-06-22 |  |  |  |  |  |  |  |  |  |  |  |  |  |  |  |  |  |  |  |  |
| MWH06.C3.C2000 |  | Electrical Underground Rough-In | 12d | 2020-10-19 A | 2020-10-31 A | MWH06.C2.C4000, MWH06.C3.CS1060 | 100% | 2020-11-02 | 2020-11-16 |  | VECA Electric [960 h] | 707 | 2 | 3 | 4 | 2 | 2 | 3 |  |  | 100 |  |  |  |  |
| MWH06.C3.C2050 |  | Exterior Equipment Pads - Electrical | 12d | 2020-11-27 A | 2020-12-11 A | MWH06.C3.C1050 SS, MWH06.C3.C2000 | 100% | 2021-01-02 | 2021-01-15 |  | OLSON [1200 h]; VECA Electric [240 h] | 326 | 2 | 3 | 4 | 2 | 2 | 3 | 1 | 4 | 100 |  | CONC | 1 |  |
| MWH06.C3.C2010 |  | Exterior Equipment Pads - for UPM's | 4d | 2020-12-01 A | 2020-12-02 A | MWH06.C2.C4010, MWH06.C3.C2000 SS | 100% | 2021-01-02 | 2021-01-06 |  | OLSON [400 h]; VECA Electric [80 h] | 400 | 2 | 3 | 2 | 2 | 2 | 3 | 1 | 4 |  |  |  |  |  |
| MWH06.C3.C2040 |  | Set Electrical Equipment-UPM | 4d | 2020-12-18 A | 2020-12-19 A | MWH06.C3.C2010, MWH06.C3.E1020, MWH06.C3.E1030 | 100% | 2021-01-07 | 2021-01-12 |  | VECA Electric [80 h] | 773 | 3 | 3 | 4 | 2 | 2 | 3 | 5 | 4 |  |  |  |  |  |
| MWH06.C3.C2110 |  | Set Exterior Electrical OFCI Equipment - GEN | 5d | 2021-02-19 A | 2021-02-19 A | MWH06.C3.C2050, MWH06.C3.E1060, MWH06.C3.E1070 | 100% | 2021-03-01 | 2021-03-05 |  | VECA Electric [200 h] | 1442 | 4 | 3 | 4 | 2 | 2 | 3 | 5 | 4 | 0 |  |  |  |  |
| MWH06.C3.C2260 |  | Lift & Set MER in Place | 5d | 2021-04-09 A | 2021-04-09 A | MWH06.C3.E1350, MWH06.C3.E1130, MWH06.C3.C2050, MWH06.C3.C1230 | 100% | 2021-04-26 | 2021-04-30 |  | VECA Electric [120 h] | 1434 | 4 | 3 | 4 | 2 | 2 | 3 | 5 | 4 | 0 |  |  | 4 | 3 |
| MWH06.C3.C2300 |  | Assemble MER & Complete Shipping Split (SE) | 10d | 2021-04-10 A | 2021-04-20 A | MWH06.C3.C2260 | 100% | 2021-05-03 | 2021-05-13 |  |  | 1449 | 2 | 3 |  | 2 | 2 | 3 | 5 | 4 |  |  |  | 4 | 3 |
| MWH06.C3.C2290 |  | Steel Support for OH Conductors & Cable Tray Installation | 4d | 2021-04-12 A | 2021-04-14 A | MWH06.C3.C2050, MWH06.C3.C2260 | 100% | 2021-04-30 | 2021-05-05 |  | Steel [160 h] | 1443 | 3 | 3 | 3 | 2 | 2 | 3 | 5 | 2 |  |  |  |  |  |
| MWH06.C3.C2330 |  | GEN & UPM to MER Cable Bus Instal | 10d | 2021-05-05 A | 2021-05-17 A | MWH06.C3.C2290, MWH06.C3.C2300, MWH06-9940, MWH06.C3.C2110, MWH06-10313, MWH06-10570 | 100% | 2021-05-17 | 2021-05-28 |  | VECA Electric [560 h] | 1445 | 2 | 3 | 4 | 2 | 2 | 3 | 5 | 4 | 0 |  |  |  | 3 |
| MWH06-10357 |  | Generator & Utility Power Pull | 4d | 2021-05-18 A | 2021-05-24 A | MWH06-10421, MWH06.D6.C3.C2140, MWH06.C2.C4370, MWH06.C3.C2290, MWH06.C3.C2110, MWH06.C3.C2330, MWH06-10531, MWH06-10530 | 100% | 2021-06-01 | 2021-06-04 |  | VECA Electric [320 h] | 1444 | 2 | 3 | 4 | 2 | 2 | 3 | 6 | 11 | 0 |  |  |  | 3 |
| MWH06.C3.C2350 |  | Electrical Feeders to Mechanical Equipment Pull-Test-Term | 20d | 2021-05-29 A | 2021-06-22 A | MWH06.C3.C2300, MWH06.C3.C2160, MWH06.C3.C2110, MWH06.C3.C2290, MWH06.D6.C3.C2130, MWH06-9940, MWH06.C3.C2380 SS, MWH06-9764 SS+8d, MWH06-10531, MWH06-10530 | 100% | 2021-06-10 | 2021-07-06 |  | VECA Electric [1080 h] | 1446 | 2 | 3 | 4 | 2 | 2 | 3 | 6 | 11 | 0 | 1 |  |  | 3 |
| MWH06.C3.C2380 |  | Generator & Utility Power Test-Term | 8d | 2021-05-29 A | 2021-06-09 A | MWH06.C3.C2110, MWH06.C3.C2290, MWH06.C3.C2330, MWH06.D6.C3.C2140, MWH06.C2.C4370, MWH06-10357, MWH06-10531, MWH06-10530, MWH06-10571 | 100% | 2021-06-03 | 2021-06-11 |  | VECA Electric [640 h] | 1444 | 2 | 3 | 4 | 2 | 2 | 3 | 6 | 11 | 0 | 1 |  |  | 3 |
|  | 2 | **Mechanical** |  | 2020-10-19 | 2021-04-22 |  |  |  |  |  |  |  |  |  |  |  |  |  |  |  |  |  |  |  |  |
| MWH06.C3.C2020 |  | Mechanical/Plumbing Underground Rough-In | 12d | 2020-10-19 A | 2020-10-31 A | MWH06.C3.C3000 | 100% | 2020-11-17 | 2020-12-03 |  | TCM Mechanical [720 h] | 1452 | 1 | 3 | 51 | 2 | 2 | 3 |  |  |  |  |  |  |  |
| MWH06.C3.C2060 |  | Exterior Equipment Pads - Mechanical | 12d | 2020-11-30 A | 2020-12-02 A | MWH06.C3.C2050 SS+6d, MWH06.C3.C2020 | 100% | 2021-01-09 | 2021-01-23 |  | OLSON [1200 h]; VECA Electric [240 h] | 1451 | 2 | 3 |  | 2 | 2 | 3 | 1 | 4 |  |  | CONC |  |  |
| MWH06.C3.C2100 |  | Steel Supports for Exterior Mechanical Equipment (Fluid Cooler Steel & Pipe Steel Supports) | 4d | 2021-01-11 A | 2021-01-15 A | MWH06.C3.C2060 | 100% | 2021-02-01 | 2021-02-04 |  | Steel [160 h] | 433 | 3 | 3 | 3 | 2 | 2 | 3 | 5 | 2 |  |  |  |  |  |
| MWH06.C3.C2135 |  | Set Gen Stack / Exhaust duct | 3d | 2021-04-06 A | 2021-04-06 A | MWH06.C3.C2110 | 100% | 2021-04-26 | 2021-04-28 |  | TCM Mechanical [60 h]; Steel [120 h] |  | 4 | 3 | 51 |  | 2 | 3 | 5 | 4 |  |  |  |  |  |
| MWH06.C3.C2160 |  | Set Exterior Mechanical OFCI Equipment (FC / WTE / Pumps) | 12d | 2021-04-08 A | 2021-04-22 A | MWH06.C3.C2100, MWH06.C3.E1200, MWH06.C3.E1210 | 100% | 2021-04-26 | 2021-05-10 | start on or after 2021-04-08 | TCM Mechanical [720 h] | 1447 | 3 | 3 | 51 | 2 | 2 | 3 | 5 | 4 |  |  |  |  |  |
| MWH06.C3.C2161 |  | Set Exterior Water Treatment equipment | 2d | 2021-04-09 A | 2021-04-12 A | MWH06.D5.S1000, MWH06.D5.S1030, MWH06.C3.C2060 | 100% | 2021-04-26 | 2021-04-27 | start on or after 2021-04-09 | TCM Mechanical [120 h] |  | 2 | 3 |  |  | 2 |  | 5 | 4 |  |  |  |  |  |
| MWH06.C3.C2170 |  | Mechanical Equipment Piping Connections | 6d | 2021-04-15 A | 2021-04-21 A | MWH06.C3.C2160 SS+5d, MWH06.C3.C2161, MWH06.C3.C2161 FF | 100% | 2021-05-03 | 2021-05-08 |  | TCM Mechanical [720 h] | 1453 | 2 | 3 | 51 | 2 | 2 | 3 | 3 | 4 |  |  |  |  |  |

Notes:
- MWH06-10357: VECA Update Notes: Incentive is on the start and finish of the last Cell in a COLO
- MWH06.C3.C2380: VECA Update Notes: Incentive is on the start and finish of the last Cell in a COLO

| ID | WBS | Activity | Duration | Start | Finish | Predecessors | Complete | Planned start | Planned finish | Constraint | Resources | MSP Activity ID | HRA - Safety Level | COLO | MSFT-Funding Releases | CELL | WBS | HRA - Required Permit- Priority-1 | HRA - Required Permit- Priority-2 | VECA % Complete | TRADE | VECA- Changed | Discipline | MER | Critical Path mer to COLO |
| --- | --- | --- | --- | --- | --- | --- | --- | --- | --- | --- | --- | --- | --- | --- | --- | --- | --- | --- | --- | --- | --- | --- | --- | --- | --- |
|  | 3 | **Plumbing** |  |  |  |  |  |  |  |  |  |  |  |  |  |  |  |  |  |  |  |  |  |  |  |
|  | 4 | **Special Systems** |  | 2021-06-10 | 2021-07-15 |  |  |  |  |  |  |  |  |  |  |  |  |  |  |  |  |  |  |  |  |
| MWH06.C3.C2190 |  | Fire Alarm Installation | 12d | 2021-06-10 A | 2021-06-24 A | MWH06.C3.C2160, MWH06.C3.C2110, MWH06.C3.C2350 SS+9d, MWH06-10531, MWH06-10530 | 100% | 2021-06-28 | 2021-07-13 |  | VECA Electric [240 h] | 1456 | 1 | 3 | 2 | 2 | 3 | 6 | 3 |  |  |  |  |  |  |
| MWH06.C3.C2390 |  | Controls Installation | 12d | 2021-06-25 A | 2021-07-15 A | MWH06.C3.C2110, MWH06.C3.C2160, MWH06.C3.C2190, MWH06.C3.C2330, MWH06-10531, MWH06-10530 | 100% | 2021-06-25 | 2021-07-10 |  | VECA Electric [720 h] | 1457 | 1 | 3 | 2 | 2 | 3 | 6 | 3 | 0 | 4 | 1 |  |  |  |
|  | 4 | **Exterior Equipment Cell 4** |  | 2020-10-19 | 2021-08-04 |  |  |  |  |  |  |  |  |  |  |  |  |  |  |  |  |  |  |  |  |
|  | 1 | **Electrical** |  | 2020-10-19 | 2021-07-15 |  |  |  |  |  |  |  |  |  |  |  |  |  |  |  |  |  |  |  |  |
| MWH06.C3.C4000 |  | Electrical Underground Rough-In | 12d | 2020-10-19 A | 2020-10-31 A | MWH06.C3.C2000 | 100% | 2020-11-17 | 2020-12-03 |  | VECA Electric [960 h] | 1460 | 2 | 3 | 2 | 4 | 3 |  |  | 100 | 4 |  |  |  |  |
| MWH06.C3.C4050 |  | Exterior Equipment Pads - Electrical | 12d | 2020-12-02 A | 2020-12-11 A | MWH06.C3.C2050 SS, MWH06.C3.C4000 | 100% | 2021-01-02 | 2021-01-15 |  | OLSON [1200 h]; VECA Electric [240 h] | 328 | 2 | 3 | 2 | 4 | 3 | 1 | 4 | 100 | 4 |  | CONC | 1 |  |
| MWH06.C3.C4010 |  | Exterior Equipment Pads - for UPM's | 4d | 2020-12-04 A | 2020-12-09 A | MWH06.C3.C4000 SS | 100% | 2021-01-02 | 2021-01-06 |  | OLSON [400 h]; VECA Electric [80 h] | 402 | 2 | 3 | 2 | 4 | 3 | 1 | 4 |  | 2 |  |  |  |  |
| MWH06.C3.C4040 |  | Set Electrical Equipment-UPM | 4d | 2021-01-04 A | 2021-01-04 A | MWH06.C3.C4010, MWH06.C3.E1100, MWH06.C3.E1110 | 100% | 2021-01-11 | 2021-01-14 |  | VECA Electric [80 h] | 754 | 3 | 3 | 2 | 4 | 3 | 5 | 4 | 0 | 4 |  |  |  |  |
| MWH06.C3.C4100 |  | Set Exterior Electrical OFCI Equipment - GEN | 5d | 2021-02-26 A | 2021-02-26 A | MWH06.C3.C4050, MWH06.C3.E1240, MWH06.C3.E1250 | 100% | 2021-03-01 | 2021-03-05 |  | VECA Electric [200 h] | 1461 | 4 | 3 | 2 | 4 | 3 | 5 | 4 | 0 | 4 |  |  |  |  |
| MWH06.C3.C4270 |  | Lift & Set MER in Place | 5d | 2021-04-24 A | 2021-04-24 A | MWH-06-03-ROJ-F, MWH06.C3.E1370, MWH06.C3.E1270, MWH06.C3.C4050, MWH06.C3.C3200 | 100% | 2021-05-07 | 2021-05-12 |  | VECA Electric [120 h] | 1462 | 4 | 3 | 2 | 4 | 3 | 5 | 4 | 0 | 4 |  |  | 4 | 3 |
| MWH06.C3.C4290 |  | Steel Support for OH Conductors & Cable Tray Installation | 4d | 2021-04-26 A | 2021-04-29 A | MWH06.C3.C4050, MWH06.C3.C4270, MWH06.C3.C2290 | 100% | 2021-04-30 | 2021-05-05 |  | Steel [160 h] | 807 | 3 | 3 | 2 | 4 | 3 | 5 | 2 |  | 3 |  |  |  |  |
| MWH06.C3.C4300 |  | Assemble MER & Complete Shipping Split (SE) | 10d | 2021-04-26 A | 2021-05-07 A | MWH06.C3.C4270, MWH06-10530 | 100% | 2021-04-30 | 2021-05-12 |  |  | 1467 | 2 | 3 | 2 | 4 | 3 | 5 | 4 |  |  |  |  | 4 | 3 |
| MWH06.C3.C4380 |  | Electrical Feeders to Mechanical Equipment Pull-Test-Term | 20d | 2021-06-05 A | 2021-06-29 A | MWH06.C3.C4130, MWH06.C3.C4100, MWH06.C3.C4290, MWH06.C3.C4300, MWH06.D6.C3.C4130, MWH06-9942, MWH06.C3.C4370 SS, MWH06-9765 SS+8d, MWH06-10531, MWH06-10530, MWH06-10356 | 100% |  |  |  | VECA Electric [1080 h] | 1465 | 2 | 3 | 2 | 4 | 3 | 6 | 11 | 0 | 4 | 1 |  |  | 3 |
| MWH06.C3.C4320 |  | GEN & UPM to MER Cable Bus Instal | 10d | 2021-06-14 A | 2021-06-22 A | MWH06.C3.C4290, MWH06.C3.C4300, MWH06-9942, MWH06.C3.C4100, MWH06-10314, MWH06-10531, MWH06-10530, MWH06-10557 | 100% | 2021-06-07 | 2021-06-18 |  | VECA Electric [560 h] | 1464 | 2 | 3 | 2 | 4 | 3 | 5 | 4 | 0 | 4 |  |  |  | 3 |
| MWH06-10356 |  | Generator & Utility Power Pull | 4d | 2021-06-25 A | 2021-06-30 A | MWH06-10423, MWH06.D6.C3.C4140, MWH06.C3.C4290, MWH06.C3.C4100, MWH06.C3.C4320, MWH06-10531, MWH06-10530, MWH06-10558 | 100% | 2021-06-01 | 2021-06-04 |  | VECA Electric [320 h] | 1463 | 2 | 3 | 2 | 4 | 3 | 6 | 11 | 0 | 4 | 1 |  |  | 3 |
| MWH06.C3.C4370 |  | Generator & Utility Power Test-Term | 8d | 2021-06-29 A | 2021-07-15 A | MWH06-10580, MWH06-10574, MWH06.C3.C4320, MWH06.C3.C4100, MWH06.C3.C4290, MWH06.D6.C3.C4140, MWH06.C3.C2380, MWH06-10356, MWH06-10531, MWH06-10530, MWH06-10572 | 100% | 2021-07-06 | 2021-07-14 |  | VECA Electric | 1463 | 2 | 3 | 2 | 4 | 3 | 6 | 11 | 0 | 4 | 1 |  |  | 3 |
|  | 2 | **Mechanical** |  | 2020-10-23 | 2021-05-07 |  |  |  |  |  |  |  |  |  |  |  |  |  |  |  |  |  |  |  |  |
| MWH06.C3.C4020 |  | Mechanical/Plumbing Underground Rough-In | 12d | 2020-10-23 A | 2020-10-31 A | MWH06.C3.C2020 | 100% | 2020-12-04 | 2020-12-18 |  | TCM Mechanical [720 h] | 1471 | 1 | 3 | 2 | 4 | 3 |  |  |  | 51 |  |  |  |  |
| MWH06.C3.C4070 |  | Exterior Equipment Pads - Mechanical | 12d | 2020-12-03 A | 2020-12-11 A | MWH06.C3.C4050 SS+6d, MWH06.C3.C4020 | 100% | 2021-01-02 | 2021-01-15 |  | OLSON [1200 h]; VECA Electric [240 h] | 1470 | 2 | 3 | 2 | 4 | 3 | 1 | 4 |  |  |  | CONC |  |  |
| MWH06.C3.C4090 |  | Steel Supports for Exterior Mechanical Equipment (Fluid Cooler Steel & Pipe Steel Supports) | 4d | 2021-01-11 A | 2021-01-15 A | MWH06.C3.C4070 | 100% | 2021-02-01 | 2021-02-04 |  | Steel [160 h] | 435 | 3 | 3 | 2 | 4 | 3 | 5 | 2 |  | 3 |  |  |  |  |
| MWH06.C3.C4135 |  | Set Gen Stack / Exhaust duct | 3d | 2021-04-07 A | 2021-04-07 A | MWH06.C3.C4100 | 100% | 2021-04-30 | 2021-05-04 |  | TCM Mechanical [60 h]; Steel [120 h] |  | 4 | 3 |  | 4 | 3 | 5 | 4 |  | 51 |  |  |  |  |
| MWH06.C3.C4130 |  | Set Exterior Mechanical OFCI Equipment (FC / WTE / Pumps) | 12d | 2021-04-12 A | 2021-04-12 A | MWH06.C3.C4090, MWH06.C3.E1280, MWH06.C3.E1290 | 100% | 2021-04-30 | 2021-05-14 | start on or after 2021-04-12 | TCM Mechanical [720 h] | 1466 | 3 | 3 | 2 | 4 | 3 | 5 | 4 |  | 51 |  |  |  |  |
| MWH06.C3.C4131 |  | Set Exterior Water Treatment equipment | 2d | 2021-04-12 A | 2021-04-12 A | MWH06.D5.S1000, MWH06.D5.S1030, MWH06.C3.C4070 | 100% | 2021-04-30 | 2021-05-03 | start on or after 2021-04-13 | TCM Mechanical [120 h] |  | 2 | 3 |  | 4 |  | 5 | 4 |  |  |  |  |  |  |
| MWH06.C3.C4140 |  | Mechanical Equipment Piping Connections | 6d | 2021-04-30 A | 2021-05-07 A | MWH06.C3.C4130 SS+5d, MWH06.C3.C4131, MWH06.C3.C4131 FF | 100% | 2021-05-17 | 2021-05-24 |  | TCM Mechanical [720 h] | 1472 | 2 | 3 | 2 | 4 | 3 | 3 | 4 |  | 51 |  |  |  |  |

Notes:
- MWH06.C3.C4040: VECA Update Notes: UPMs OFCI not onsite yet
- MWH06-10356: VECA Update Notes: Incentive is on the start and finish of the last Cell in a COLO
- MWH06.C3.C4370: VECA Update Notes: Incentive is on the start and finish of the last Cell in a COLO

| ID | WBS | Activity | Duration | Start | Finish | Predecessors | Complete | Planned start | Planned finish | Resources | MSP Activity ID | HRA - Safety Level | COLO | MSFT-Funding Releases | CELL | WBS | HRA - Required Permit- Priority-1 | HRA - Required Permit- Priority-2 | VECA % Complete | TRADE | VECA- Changed |
| --- | --- | --- | --- | --- | --- | --- | --- | --- | --- | --- | --- | --- | --- | --- | --- | --- | --- | --- | --- | --- | --- |
|  | 3 | **Plumbing** |  |  |  |  |  |  |  |  |  |  |  |  |  |  |  |  |  |  |  |
|  | 4 | **Special Systems** |  | 2021-07-07 | 2021-08-04 |  |  |  |  |  |  |  |  |  |  |  |  |  |  |  |  |
| MWH06.C3.C4180 |  | Fire Alarm Installation | 12d | 2021-07-07 A | 2021-07-20 A | MWH06.C3.C4130, MWH06.C3.C4100, MWH06.C3.C3110 SS, MWH06-10531, MWH06-10530 | 100% | 2021-07-31 | 2021-08-13 | VECA Electric [240 h] | 1475 | 1 | 3 | 2 | 4 | 3 | 6 | 3 |  |  |  |
| MWH06.C3.C4410 |  | Controls Installation | 12d | 2021-07-21 A | 2021-08-04 A | MWH06.C3.C4100, MWH06.C3.C4130, MWH06.C3.C4180, MWH06-10531, MWH06-10530 | 100% | 2021-08-16 | 2021-08-28 | VECA Electric [720 h] | 1476 | 1 | 3 | 2 | 4 | 3 | 6 | 3 | 0 | 4 |  |
|  | 5 | **Mechanical Corridor Cell 1** |  | 2021-03-10 | 2021-07-22 |  |  |  |  |  |  |  |  |  |  |  |  |  |  |  |  |
|  | 1 | **Electrical** |  | 2021-04-30 | 2021-07-16 |  |  |  |  |  |  |  |  |  |  |  |  |  |  |  |  |
| MWH06.C3.C1130 |  | VFD'S Installation & Wiring | 12d | 2021-04-30 A | 2021-06-30 A | MWH06.C3.C1070, MWH06.C3.C1140, MWH06-10531, MWH06-10530 | 100% | 2021-06-01 | 2021-06-15 | VECA Electric [240 h] | 1479 | 1 | 3 | 2 | 1 | 4 | 3 | 4 | 0 | 4 | 1 |
| MWH06.C3.C1330 |  | Ligthing Installation | 12d | 2021-07-01 A | 2021-07-16 A | MWH06.C2.C3390 FS+15d, MWH06.C3.C1130, MWH06-10531, MWH06-10530 | 100% | 2021-07-31 | 2021-08-13 | VECA Electric [480 h] | 1480 | 1 | 3 | 2 | 1 | 4 | 3 | 4 | 0 | 4 |  |
|  | 2 | **Mechanical** |  | 2021-03-10 | 2021-04-29 |  |  |  |  |  |  |  |  |  |  |  |  |  |  |  |  |
| MWH06.C3.C1140 |  | AHU/DOAS Equipment Setting | 5d | 2021-03-10 A | 2021-03-15 A | MWH06.C3.C1070, MWH06.C3.E1140, MWH06.C3.E1160 | 100% | 2021-03-31 | 2021-04-05 | TCM Mechanical [480 h] | 1482 | 3 | 3 | 2 | 1 | 4 |  |  |  | 51 |  |
| MWH06.C3.C1180 |  | Hydronic Piping Installation | 12d | 2021-04-23 A | 2021-04-29 A | MWH06.C3.C1140 | 100% | 2021-04-30 | 2021-05-14 | TCM Mechanical [480 h] | 1483 | 3 | 3 | 2 | 1 | 4 | 3 | 4 |  | 51 |  |
|  | 3 | **Plumbing** |  | 2021-06-01 | 2021-07-15 |  |  |  |  |  |  |  |  |  |  |  |  |  |  |  |  |
| MWH06.C3.C1300 |  | Toilet Piping Installation / DW | 12d | 2021-06-01 A | 2021-06-16 A | MWH06.C3.C1250, MWH06-10530 | 100% | 2021-06-30 | 2021-07-15 | TCM Mechanical [480 h] | 209 | 1 | 3 | 2 | 1 | 4 | 4 | 11 |  | 51 |  |
| MWH06.C3.C1290 |  | Floor Drain System Installation | 12d | 2021-06-30 A | 2021-07-15 A | MWH06.C3.C1030, MWH06.C3.C1250, MWH06-10530 | 100% | 2021-07-31 | 2021-08-13 |  | 205 | 1 | 3 | 2 | 1 | 4 | 6 | 3 |  |  |  |
|  | 4 | **Special Systems** |  | 2021-03-31 | 2021-07-22 |  |  |  |  |  |  |  |  |  |  |  |  |  |  |  |  |
| MWH06.C3.C1080 |  | Fire Riser Installation | 12d | 2021-03-31 A | 2021-04-14 A | MWH06.C3.C1030, MWH06.C3.C1140 | 100% | 2021-04-30 | 2021-05-14 |  | 1486 | 3 | 3 | 2 | 1 | 4 | 6 | 3 |  |  |  |
| MWH06.C3.C1150 |  | Fire Alarm System | 12d | 2021-04-15 A | 2021-04-29 A | MWH06.C3.C1080 | 100% | 2021-05-15 | 2021-05-29 | VECA Electric [240 h] | 188 | 1 | 3 | 2 | 1 | 4 | 6 | 3 |  |  |  |
| MWH06.C3.C1190 |  | Controls Installation | 18d | 2021-05-25 A | 2021-07-22 A | MWH06.C3.C1130, MWH06.C3.C1150 FS+20d, MWH06-10531, MWH06-10530 | 100% | 2021-06-16 | 2021-07-08 | VECA Electric [720 h] | 196 | 1 | 3 | 2 | 1 | 4 | 6 | 3 | 0 | 4 | 1 |
|  | 6 | **Mechanical Corridor Cell 3** |  | 2021-03-16 | 2021-07-31 |  |  |  |  |  |  |  |  |  |  |  |  |  |  |  |  |
|  | 1 | **Electrical** |  | 2021-06-30 | 2021-07-31 |  |  |  |  |  |  |  |  |  |  |  |  |  |  |  |  |
| MWH06.C3.C3130 |  | VFD'S Installation & Wiring | 12d | 2021-06-30 A | 2021-07-15 A | MWH06.C3.C1130, MWH06.C3.C3090, MWH06.C3.C3140, MWH06-10531, MWH06-10530 | 100% | 2021-07-31 | 2021-08-13 | VECA Electric [240 h] | 1489 | 1 | 3 | 2 | 3 | 4 | 3 | 4 | 0 | 4 |  |
| MWH06.C3.C3290 |  | Ligthing Installation | 12d | 2021-07-17 A | 2021-07-31 A | MWH06.C3.C1330, MWH06.C3.C3130, MWH06.C3.C3160, MWH06-10531, MWH06-10530 | 100% | 2021-08-16 | 2021-08-28 | VECA Electric [480 h] | 210 | 1 | 3 | 2 | 3 | 4 | 3 | 4 | 0 | 4 |  |
|  | 2 | **Mechanical** |  | 2021-03-16 | 2021-04-29 |  |  |  |  |  |  |  |  |  |  |  |  |  |  |  |  |
| MWH06.C3.C3140 |  | AHU/DOAS Equipment Setting | 5d | 2021-03-16 A | 2021-03-23 A | MWH06.C3.C3090, MWH06.C3.E1300, MWH06.C3.E1320 | 100% | 2021-03-31 | 2021-04-05 | TCM Mechanical [480 h] | 1491 | 3 | 3 | 2 | 3 | 4 |  |  |  | 51 |  |
| MWH06.C3.C3150 |  | Hydronic Piping Installation | 12d | 2021-04-23 A | 2021-04-29 A | MWH06.C3.C3140 | 100% | 2021-04-30 | 2021-05-14 | TCM Mechanical [480 h] | 1492 | 3 | 3 | 2 | 3 | 4 | 3 | 4 |  | 51 |  |

Notes:
- MWH06.C3.C1330: Notes: 8.17- Added LAG to start in MArch, to help manpower level in FEB

| ID | WBS | Activity | Duration | Start | Finish | Predecessors | Complete | Planned start | Planned finish | Resources | MSP Activity ID | HRA - Safety Level | COLO | TRADE | MSFT-Funding Releases | CELL | WBS | HRA - Required Permit- Priority-1 | HRA - Required Permit- Priority-2 | VECA % Complete | VECA- Changed |
| --- | --- | --- | --- | --- | --- | --- | --- | --- | --- | --- | --- | --- | --- | --- | --- | --- | --- | --- | --- | --- | --- |
|  | 3 | **Plumbing** |  | 2021-06-01 | 2021-07-15 |  |  |  |  |  |  |  |  |  |  |  |  |  |  |  |  |
| MWH06.C3.C3220 |  | Toilet Piping Installation / DW | 12d | 2021-06-01 A | 2021-06-16 A | MWH06.C3.C3160, MWH06-10530 | 100% | 2021-06-30 | 2021-07-15 | TCM Mechanical [480 h] | 207 | 1 | 3 | 51 | 2 | 3 | 4 | 4 | 11 |  |  |
| MWH06.C3.C3210 |  | Floor Drain System Installation | 12d | 2021-06-30 A | 2021-07-15 A | MWH06.C3.C3030, MWH06.C3.C3160, MWH06.C3.C3140, MWH06-10530 | 100% | 2021-07-31 | 2021-08-13 |  | 212 | 1 | 3 |  | 2 | 3 | 4 | 6 | 3 |  |  |
|  | 4 | **Special Systems** |  | 2021-06-30 | 2021-07-22 |  |  |  |  |  |  |  |  |  |  |  |  |  |  |  |  |
| MWH06.C3.C3100 |  | Fire Alarm System | 12d | 2021-06-30 A | 2021-07-15 A | MWH06.C3.C3140, MWH06-10531, MWH06-10530 | 100% | 2021-07-31 | 2021-08-13 | VECA Electric [240 h] | 1496 | 1 | 3 |  | 2 | 3 | 4 | 6 | 3 |  |  |
| MWH06.C3.C3170 |  | Controls Installation | 18d | 2021-06-30 A | 2021-07-22 A | MWH06.C3.C3130, MWH06.C3.C3100, MWH06.C3.C1190 SS, MWH06-10531, MWH06-10530 | 100% |  |  | VECA Electric [720 h] | 1495 | 1 | 3 | 4 | 2 | 3 | 4 | 6 | 3 | 0 | 1 |
|  | 7 | **Mechanical Corridor Cell 2** |  | 2021-03-10 | 2021-07-30 |  |  |  |  |  |  |  |  |  |  |  |  |  |  |  |  |
|  | 1 | **Electrical** |  | 2021-04-30 | 2021-07-30 |  |  |  |  |  |  |  |  |  |  |  |  |  |  |  |  |
| MWH06.C3.C2130 |  | VFD'S Installation & Wiring | 12d | 2021-04-30 A | 2021-07-15 A | MWH06.C3.C2070, MWH06.C3.C2140, MWH06-10531, MWH06-10530 | 100% | 2021-06-01 | 2021-06-15 | VECA Electric [240 h] | 1500 | 1 | 3 | 4 | 2 | 2 | 4 | 3 | 4 | 0 | 1 |
| MWH06.C3.C2410 |  | Ligthing Installation | 12d | 2021-07-16 A | 2021-07-30 A | MWH06.C2.C4410, MWH06.C3.C2130, MWH06.C3.C2200, MWH06-10531, MWH06-10530 | 100% |  |  | VECA Electric [480 h] | 203 | 1 | 3 | 4 | 2 | 2 | 4 | 3 | 4 | 0 |  |
|  | 2 | **Mechanical** |  | 2021-03-10 | 2021-04-29 |  |  |  |  |  |  |  |  |  |  |  |  |  |  |  |  |
| MWH06.C3.C2140 |  | AHU/DOAS Equipment Setting | 5d | 2021-03-10 A | 2021-03-15 A | MWH06.C3.C2070, MWH06.C3.E1150, MWH06.C3.E1170 | 100% | 2021-03-31 | 2021-04-05 | TCM Mechanical [480 h] | 1502 | 3 | 3 | 51 | 2 | 2 | 4 |  |  |  |  |
| MWH06.C3.C2180 |  | Hydronic Piping Installation | 12d | 2021-04-23 A | 2021-04-29 A | MWH06.C3.C2140 | 100% | 2021-04-30 | 2021-05-14 | TCM Mechanical [480 h] | 1503 | 3 | 3 | 51 | 2 | 2 | 4 | 3 | 4 |  |  |
|  | 3 | **Plumbing** |  | 2021-06-01 | 2021-07-15 |  |  |  |  |  |  |  |  |  |  |  |  |  |  |  |  |
| MWH06.C3.C2230 |  | Toilet Piping Installation / DW | 12d | 2021-06-01 A | 2021-06-16 A | MWH06.C3.C2200, MWH06-10530 | 100% | 2021-06-30 | 2021-07-15 | TCM Mechanical [480 h] | 211 | 1 | 3 | 51 | 2 | 2 | 4 | 4 | 11 |  |  |
| MWH06.C3.C2220 |  | Floor Drain System Installation | 12d | 2021-06-30 A | 2021-07-15 A | MWH06.C3.C2030, MWH06.C3.C2200, MWH06.C3.C2140, MWH06-10530 | 100% | 2021-07-31 | 2021-08-13 |  | 222 | 1 | 3 |  | 2 | 2 | 4 | 6 | 3 |  |  |
|  | 4 | **Special Systems** |  | 2021-06-16 | 2021-07-15 |  |  |  |  |  |  |  |  |  |  |  |  |  |  |  |  |
| MWH06.C3.C2210 |  | Controls Installation | 18d | 2021-06-16 A | 2021-07-08 A | MWH06.C3.C2130, MWH06.C3.C2150, MWH06-10531, MWH06-10530 | 100% |  |  | VECA Electric [720 h] | 1506 | 1 | 3 | 4 | 2 | 2 | 4 | 6 | 3 | 0 | 1 |
| MWH06.C3.C2150 |  | Fire Alarm System | 12d | 2021-06-30 A | 2021-07-15 A | MWH06.C3.C2140, MWH06-10531, MWH06-10530 | 100% | 2021-07-31 | 2021-08-13 | VECA Electric [240 h] | 1507 | 1 | 3 |  | 2 | 2 | 4 | 6 | 3 |  |  |
|  | 8 | **Mechanical Corridor Cell 4** |  | 2021-03-16 | 2021-08-13 |  |  |  |  |  |  |  |  |  |  |  |  |  |  |  |  |
|  | 1 | **Electrical** |  | 2021-06-16 | 2021-08-13 |  |  |  |  |  |  |  |  |  |  |  |  |  |  |  |  |
| MWH06.C3.C4160 |  | VFD'S Installation & Wiring | 12d | 2021-06-16 A | 2021-07-30 A | MWH06.C3.C2130, MWH06.C3.C4110, MWH06.C3.C4170, MWH06-10531, MWH06-10530 | 100% | 2021-06-16 | 2021-06-29 | VECA Electric [240 h] | 1511 | 1 | 3 | 4 | 2 | 4 | 4 | 3 | 4 | 0 | 1 |
| MWH06.C3.C4400 |  | Ligthing Installation | 12d | 2021-07-31 A | 2021-08-13 A | MWH06.C3.C2410, MWH06.C3.C4160, MWH06.C3.C4200, MWH06-10531, MWH06-10530 | 100% | 2021-08-30 | 2021-09-14 | VECA Electric [480 h] | 1512 | 1 | 3 | 4 | 2 | 4 | 4 | 3 | 4 | 0 |  |
|  | 2 | **Mechanical** |  | 2021-03-16 | 2021-04-29 |  |  |  |  |  |  |  |  |  |  |  |  |  |  |  |  |
| MWH06.C3.C4170 |  | AHU/DOAS Equipment Setting | 5d | 2021-03-16 A | 2021-03-30 A | MWH06.C3.C4110, MWH06.C3.E1310, MWH06.C3.E1330 | 100% | 2021-03-31 | 2021-04-05 | TCM Mechanical [480 h] | 1514 | 3 | 3 | 51 | 2 | 4 | 4 |  |  |  |  |
| MWH06.C3.C4190 |  | Hydronic Piping Installation | 12d | 2021-04-23 A | 2021-04-29 A | MWH06.C3.C4170 | 100% | 2021-04-30 | 2021-05-14 | TCM Mechanical [480 h] | 1515 | 3 | 3 | 51 | 2 | 4 | 4 | 3 | 4 |  |  |

| ID | WBS | Activity | Duration | Start | Finish | Predecessors | Complete | Planned start | Planned finish | Constraint | Resources | MSP Activity ID | HRA - Safety Level | COLO | TRADE | MSFT-Funding Releases | CELL | WBS | HRA - Required Permit- Priority-1 | HRA - Required Permit- Priority-2 | VECA % Complete | VECA- Changed | MWH06- TRADES | Critical Path mer to COLO |
| --- | --- | --- | --- | --- | --- | --- | --- | --- | --- | --- | --- | --- | --- | --- | --- | --- | --- | --- | --- | --- | --- | --- | --- | --- |
|  | 3 | **Plumbing** |  | 2021-06-01 | 2021-08-13 |  |  |  |  |  |  |  |  |  |  |  |  |  |  |  |  |  |  |  |
| MWH06.C3.C4250 |  | Toilet Piping Installation / DW | 12d | 2021-06-01 A | 2021-06-16 A | MWH06.C3.C4200, MWH06-10530 | 100% | 2021-06-30 | 2021-07-15 |  | TCM Mechanical [480 h] | 220 | 1 | 3 | 51 | 2 | 4 | 4 | 4 | 11 |  |  |  |  |
| MWH06.C3.C4240 |  | Floor Drain System Installation | 12d | 2021-07-31 A | 2021-08-13 A | MWH06.C3.C4030, MWH06.C3.C4200, MWH06-10530 | 100% | 2021-08-31 | 2021-09-15 |  |  | 214 | 1 | 3 |  | 2 | 4 | 4 | 6 | 3 |  |  |  |  |
|  | 4 | **Special Systems** |  | 2021-06-30 | 2021-07-22 |  |  |  |  |  |  |  |  |  |  |  |  |  |  |  |  |  |  |  |
| MWH06.C3.C4210 |  | Controls Installation | 18d | 2021-06-30 A | 2021-07-22 A | MWH06.C3.C4160, MWH06.C3.C4120, MWH06.C3.C2210 SS, MWH06-10531, MWH06-10530 | 100% |  |  |  | VECA Electric [720 h] | 1518 | 1 | 3 | 4 | 2 | 4 | 4 | 6 | 3 | 0 | 1 |  |  |
| MWH06.C3.C4120 |  | Fire Alarm System | 12d | 2021-07-01 A | 2021-07-16 A | MWH06.C3.C4170, MWH06-10531, MWH06-10530 | 100% | 2021-07-31 | 2021-08-13 |  | VECA Electric [240 h] | 1519 | 1 | 3 |  | 2 | 4 | 4 | 6 | 3 |  |  |  |  |
|  | 9 | **Data Hall Cell 1** |  | 2021-02-03 | 2021-08-31 |  |  |  |  |  |  |  |  |  |  |  |  |  |  |  |  |  |  |  |
|  | 1 | **Electrical** |  | 2021-02-03 | 2021-08-04 |  |  |  |  |  |  |  |  |  |  |  |  |  |  |  |  |  |  |  |
| MWH06.C3.C1270 |  | HAC Installation | 3d | 2021-02-03 A | 2021-02-20 A | MWH06.C3.C1220, MWH06.C3.C1260 | 100% | 2021-03-31 | 2021-04-02 | start on or after 2021-02-15 | TCM Mechanical [480 h] | 1525 | 4 | 3 | 51 | 2 | 1 | 5 | 4 | 11 |  |  | 26 |  |
| MWH06.C3.C1310 |  | Cable Tray Installation | 12d | 2021-03-10 A | 2021-03-22 A | MWH06.C2.C3210, MWH06.C3.C1270 | 100% | 2021-04-03 | 2021-04-17 |  | VECA Electric [1440 h] | 1524 | 2 | 3 | 4 | 2 | 1 | 5 | 3 | 4 | 0 |  |  |  |
| MWH06.C3.C1350 |  | Power Bus Installation | 5d | 2021-04-12 A | 2021-04-24 A | MWH06.C3.C1270, MWH06.C2.C3260 | 100% | 2021-04-30 | 2021-05-06 |  | VECA Electric [1200 h] | 487 | 2 | 3 | 4 | 2 | 1 | 5 | 4 | 11 | 0 |  |  |  |
| MWH06.C3.C1390 |  | PDU's Installation | 3d | 2021-04-12 A | 2021-04-24 A | MWH06.C3.C1350, MWH06.C3.E1380, MWH06.C3.E1390 | 100% | 2021-05-07 | 2021-05-10 |  | VECA Electric [180 h] | 1523 | 3 | 3 | 4 | 2 | 1 | 5 | 11 |  | 0 |  | 26 |  |
| MWH06-9779 |  | Below Ceiling Branch Conduit Rough-in | 6d | 2021-06-01 A | 2021-06-07 A | MWH06.C3.C1270, MWH06-10531, MWH06-10530 | 100% |  |  |  | VECA Electric [240 h] | 1365 | 1 | 3 | 4 | 2 | 1 | 1 | 3 | 4 |  |  |  |  |
| MWH06.C3.C1420 |  | Pull/term/Test PDU to Power bus | 20d | 2021-06-19 A | 2021-07-14 A | MWH06-10397, MWH06.C3.C1390, MWH06.C3.C1350, MWH06-10531, MWH06-10530 | 100% |  |  |  | VECA Electric [1440 h] | 1417 | 2 | 3 | 4 | 2 | 1 | 3 | 4 | 11 | 0 | 1 | 26 | 3 |
| MWH06.C3.C1430 |  | Pull / Term / Test Conductors ( MER to PDU) | 21d | 2021-06-21 A | 2021-07-20 A | MWH06-10397, MWH06.C3.C1390 FF+8d, MWH06.D6.C3.C1120, MWH06.D6.C3.C1130, MWH06.D6.C3.C1120 FF, MWH06.C3.C1360 SS+7d, MWH06-9762 SS+8d, MWH06.D6.C3.C1180, MWH06-10531, MWH06-10530 | 100% | 2021-06-30 | 2021-07-27 |  | VECA Electric [1680 h] | 1526 | 2 | 3 | 4 | 2 | 1 | 5 | 6 | 4 | 0 |  | 26 |  |
| MWH06.C3.C1450 |  | Light Fixtures Installation | 6d | 2021-07-29 A | 2021-08-04 A | MWH06.C3.C1430, MWH06.C3.C1440, MWH06.C3.C1390, MWH06-10531, MWH06-10530 | 100% | 2021-07-31 | 2021-08-06 |  | VECA Electric [480 h] | 208 | 2 | 3 | 4 | 2 | 1 | 5 | 3 | 4 | 0 | 1 |  |  |
|  | 2 | **Fiber** |  | 2021-06-21 | 2021-08-31 |  |  |  |  |  |  |  |  |  |  |  |  |  |  |  |  |  |  |  |
| MWH06.C3.C1370 |  | EPMS Pull Wire / Term / Test | 12d | 2021-06-21 A | 2021-07-06 A | MWH06.C3.C1310, MWH06.D6.C3.C1130, MWH06.C3.C1430 SS+7d, MWH06-10530 | 100% | 2021-06-30 | 2021-07-15 |  | LINX [1440 h] | 1528 | 1 | 3 | 7 | 2 | 1 | 5 | 6 | 7 |  |  |  |  |
| MWH06.C3.C1410 |  | BMS Pull Wire / Term / Test | 12d | 2021-06-21 A | 2021-07-06 A | MWH06.C3.C1370 SS, MWH06-10530 | 100% | 2021-06-30 | 2021-07-15 |  | LINX [1440 h] | 1529 | 1 | 3 | 7 | 2 | 1 | 5 | 6 | 7 |  |  |  |  |
| MWH06.C3.C1460 |  | Install/Dress/Test Production Fiber (Includes MOR rack set & Fiber runner) | 20d | 2021-07-07 A | 2021-08-31 A | MWH06.C2.C3460, MWH06.C3.C1410, MWH06-10530 | 100% | 2021-08-20 | 2021-09-14 |  | LINX [1440 h] | 1530 | 1 | 3 | 7 | 2 | 1 | 5 |  | 4 |  |  |  |  |
|  | 3 | **Special Systems** |  | 2021-05-13 | 2021-07-28 |  |  |  |  |  |  |  |  |  |  |  |  |  |  |  |  |  |  |  |
| MWH06.C3.C1440 |  | Controls Installation | 12d | 2021-05-13 A | 2021-07-28 A | MWH06.C3.C1310, MWH06.C3.C1340, MWH06-10531, MWH06-10530 | 100% | 2021-06-14 | 2021-06-26 |  | VECA Electric [720 h] | 190 | 1 | 3 | 4 | 2 | 1 | 5 | 6 | 3 | 0 | 1 |  |  |
| MWH06.C3.C1340 |  | Fire Alarm System | 10d | 2021-06-30 A | 2021-07-13 A | MWH06.C3.C1310, MWH06-10531, MWH06-10530 | 100% | 2021-07-31 | 2021-08-11 |  | VECA Electric [600 h] | 194 | 1 | 3 |  | 2 | 1 | 5 | 6 | 3 |  |  |  |  |
|  | 10 | **Data Hall Cell 3** |  | 2021-02-03 | 2021-09-24 |  |  |  |  |  |  |  |  |  |  |  |  |  |  |  |  |  |  |  |
|  | 1 | **Electrical** |  | 2021-02-03 | 2021-08-26 |  |  |  |  |  |  |  |  |  |  |  |  |  |  |  |  |  |  |  |
| MWH06.C3.C3250 |  | HAC Installation | 3d | 2021-02-03 A | 2021-02-20 A | MWH06.C3.C1270, MWH06.C3.C3240, MWH06.C3.C3190, MWH06.C3.C3240 FF, MWH06.C3.C2280 | 100% | 2021-04-07 | 2021-04-09 |  | TCM Mechanical [480 h] | 1536 | 4 | 3 | 51 | 2 | 3 | 5 | 4 | 11 |  |  | 26 |  |
| MWH06.C3.C3270 |  | Cable Tray Installation | 12d | 2021-03-23 A | 2021-04-24 A | MWH06.C3.C1310, MWH06.C3.C3250 | 100% | 2021-03-31 | 2021-04-14 |  | VECA Electric [1440 h] | 1535 | 2 | 3 | 4 | 2 | 3 | 5 | 3 | 4 | 0 |  |  |  |
| MWH06.C3.C3310 |  | Power Bus Installation | 5d | 2021-04-19 A | 2021-04-30 A | MWH06.C3.C3270, MWH06.C3.C1350, MWH06-10531, MWH06-10530 | 100% | 2021-06-01 | 2021-06-05 |  | VECA Electric [1200 h] | 489 | 2 | 3 | 4 | 2 | 3 | 5 | 4 | 11 | 0 |  |  |  |
| MWH06.C3.C3340 |  | PDU's Installation | 3d | 2021-04-29 A | 2021-05-01 A | MWH06.C3.C3310, MWH06.C3.E1420, MWH06.C3.E1430, MWH06-10531, MWH06-10530 | 100% | 2021-06-07 | 2021-06-09 |  | VECA Electric [180 h] | 1534 | 3 | 3 | 4 | 2 | 3 | 5 | 11 |  | 0 |  | 26 |  |
| MWH06-9780 |  | Below Ceiling Branch Conduit Rough-in | 6d | 2021-05-08 A | 2021-05-14 A | MWH06-9779, MWH06.C3.C3250, MWH06-10531, MWH06-10530 | 100% | 2021-06-30 | 2021-07-08 |  | VECA Electric [240 h] | 1372 | 1 | 3 | 4 | 2 | 3 | 1 | 3 | 4 |  |  |  |  |
| MWH06.C3.C3410 |  | Light Fixtures Installation | 6d | 2021-07-01 A | 2021-07-09 A | MWH06.C3.C3390, MWH06.C3.C3400, MWH06.C3.C3340, MWH06-10531, MWH06-10530 | 100% | 2021-07-31 | 2021-08-06 |  | VECA Electric [480 h] | 216 | 2 | 3 | 4 | 2 | 3 | 5 | 3 | 4 | 0 | 1 |  |  |
| MWH06.C3.C3380 |  | Pull/term/Test PDU to Power bus | 20d | 2021-07-02 A | 2021-07-30 A | MWH06-10398, MWH06.C3.C3340, MWH06.C3.C3310, MWH06-10531, MWH06-10530 | 100% | 2021-07-02 | 2021-07-28 |  | VECA Electric [1440 h] | 1433 | 2 | 3 | 4 | 2 | 3 | 3 | 4 | 11 | 0 | 1 | 26 | 3 |
| MWH06.C3.C3390 |  | Pull / Term / Test Conductors ( MER to PDU) | 21d | 2021-07-08 A | 2021-08-26 A | MWH06-10575, MWH06-10398, MWH06.C3.C3340 FF+8d, MWH06.D6.C3.C3120, MWH06.D6.C3.C3130, MWH06.C3.C3330, MWH06.D6.C3.C3120 FF, MWH06.C3.C3350 SS+7d, MWH06-9763 SS+8d, MWH06.D6.C3.C3150, MWH06-10531, MWH06-10530 | 100% | 2021-08-16 | 2021-09-10 |  | VECA Electric | 1537 | 2 | 3 | 4 | 2 | 3 | 5 | 6 | 4 | 0 |  | 26 |  |

| ID | WBS | Activity | Duration | Start | Finish | Predecessors | Complete | Remaining | Planned start | Planned finish | Total float | Free float | Resources | MSP Activity ID | HRA - Safety Level | COLO | TRADE | MSFT-Funding Releases | CELL | WBS | HRA - Required Permit- Priority-1 | HRA - Required Permit- Priority-2 | VECA % Complete | VECA- Changed | MWH06- TRADES | Critical Path mer to COLO |
| --- | --- | --- | --- | --- | --- | --- | --- | --- | --- | --- | --- | --- | --- | --- | --- | --- | --- | --- | --- | --- | --- | --- | --- | --- | --- | --- |
|  | 2 | **Fiber** |  | 2021-07-01 | 2021-09-24 |  |  |  |  |  |  |  |  |  |  |  |  |  |  |  |  |  |  |  |  |  |
| MWH06.C3.C3320 |  | EPMS Pull Wire / Term / Test | 12d | 2021-07-01 A | 2021-07-16 A | MWH06.C3.C3270, MWH06.D6.C3.C3130, MWH06-10530 | 100% |  | 2021-07-31 | 2021-08-13 |  |  | LINX [1440 h] | 1540 | 1 | 3 | 7 | 2 | 3 | 5 | 6 | 7 |  |  |  |  |
| MWH06.C3.C3360 |  | BMS Pull Wire / Term / Test | 12d | 2021-07-01 A | 2021-07-16 A | MWH06.C3.C3320 SS, MWH06-10530 | 100% |  | 2021-07-31 | 2021-08-13 |  |  | LINX [1440 h] | 1541 | 1 | 3 | 7 | 2 | 3 | 5 | 6 | 7 |  |  |  |  |
| MWH06.C3.C3420 |  | Install/Dress/Test Production Fiber (Includes MOR rack set & Fiber runner) | 20d | 2021-08-31 | 2021-09-24 | MWH06.C3.C1460, MWH06.C3.C3360, MWH06-10530 |  |  |  |  | 32.1d | 0d | LINX [1440 h] | 1542 | 1 | 3 | 7 | 2 | 3 | 5 |  | 4 |  |  |  |  |
|  | 3 | **Special Systems** |  | 2021-06-14 | 2021-07-14 |  |  |  |  |  |  |  |  |  |  |  |  |  |  |  |  |  |  |  |  |  |
| MWH06.C3.C3400 |  | Controls Installation | 12d | 2021-06-14 A | 2021-06-26 A | MWH06.C3.C3270, MWH06.C3.C3300, MWH06-10531, MWH06-10530 | 100% |  |  |  |  |  | VECA Electric [720 h] | 1538 | 1 | 3 | 4 | 2 | 3 | 5 | 6 | 3 | 0 | 1 |  |  |
| MWH06.C3.C3300 |  | Fire Alarm System | 10d | 2021-07-01 A | 2021-07-14 A | MWH06.C3.C3270, MWH06-10531, MWH06-10530 | 100% |  | 2021-07-31 | 2021-08-11 |  |  | VECA Electric [600 h] | 1544 | 1 | 3 |  | 2 | 3 | 5 | 6 | 3 |  |  |  |  |
|  | 11 | **Data Hall Cell 2** |  | 2021-02-03 | 2021-09-14 |  |  |  |  |  |  |  |  |  |  |  |  |  |  |  |  |  |  |  |  |  |
|  | 1 | **Electrical** |  | 2021-02-03 | 2021-08-06 |  |  |  |  |  |  |  |  |  |  |  |  |  |  |  |  |  |  |  |  |  |
| MWH06.C3.C2280 |  | HAC Installation | 3d | 2021-02-03 A | 2021-02-20 A | MWH06.C3.C2270, MWH06.C3.C2250, MWH06.C3.C1270 | 100% |  | 2021-04-03 | 2021-04-06 |  |  | TCM Mechanical [480 h] | 1549 | 4 | 3 | 51 | 2 | 2 | 5 | 4 | 11 |  |  | 26 |  |
| MWH06.C3.C2310 |  | Cable Tray Installation | 12d | 2021-03-11 A | 2021-03-24 A | MWH06.C2.C4170, MWH06.C3.C2280 | 100% |  | 2021-04-07 | 2021-04-21 |  |  | VECA Electric [1440 h] | 1548 | 2 | 3 | 4 | 2 | 2 | 5 | 3 | 4 | 0 |  |  |  |
| MWH06.C3.C2370 |  | PDU's Installation | 3d | 2021-04-12 A | 2021-04-24 A | MWH06.C3.C2340, MWH06.C3.E1400, MWH06.C3.E1410 | 100% |  | 2021-05-07 | 2021-05-10 |  |  | VECA Electric [180 h] | 1547 | 3 | 3 | 4 | 2 | 2 | 5 | 11 |  | 0 |  | 26 |  |
| MWH06.C3.C2340 |  | Power Bus Installation | 5d | 2021-05-08 A | 2021-05-16 A | MWH06.C3.C2310, MWH06.C2.C4210, MWH06-10531, MWH06-10530 | 100% |  | 2021-06-01 | 2021-06-05 |  |  | VECA Electric [1200 h] | 491 | 2 | 3 | 4 | 2 | 2 | 5 | 4 | 11 | 0 |  |  |  |
| MWH06-9787 |  | Below Ceiling Branch Conduit Rough-in | 6d | 2021-06-14 A | 2021-06-18 A | MWH06.C3.C2280, MWH06-10531, MWH06-10530 | 100% |  | 2021-07-31 | 2021-08-06 |  |  | VECA Electric [240 h] | 1377 | 1 | 3 | 4 | 2 | 2 | 1 | 3 | 4 |  |  |  |  |
| MWH06.C3.C2440 |  | Pull/term/Test PDU to Power bus | 19d | 2021-06-23 A | 2021-07-14 A | MWH06-10400, MWH06.C3.C2370, MWH06.C3.C2340, MWH06-10531, MWH06-10530 | 100% |  | 2021-06-23 | 2021-07-16 |  |  | VECA Electric [1440 h] | 1448 | 2 | 3 | 4 | 2 | 2 | 3 | 4 | 11 | 0 | 1 | 26 | 3 |
| MWH06.C3.C2420 |  | Pull / Term / Test Conductors ( MER to PDU) | 21d | 2021-06-24 A | 2021-07-24 A | MWH06-10400, MWH06.C3.C2370 FF+8d, MWH06.D6.C3.C2120, MWH06.D6.C3.C2130, MWH06.C3.C2380, MWH06.D6.C3.C2120 FF, MWH06.C3.C2350 SS+7d, MWH06-9764 SS+8d, MWH06.D6.C3.C2170, MWH06-10531, MWH06-10530 | 100% |  | 2021-07-01 | 2021-07-28 |  |  | VECA Electric [1680 h] | 1550 | 2 | 3 | 4 | 2 | 2 | 5 | 6 | 4 | 0 |  | 26 |  |
| MWH06.C3.C2450 |  | Light Fixtures Installation | 6d | 2021-07-21 A | 2021-08-06 A | MWH06.C3.C2420, MWH06.C3.C2430, MWH06.C3.C2370, MWH06-10531, MWH06-10530 | 100% |  | 2021-07-21 | 2021-07-28 |  |  | VECA Electric [480 h] | 206 | 2 | 3 | 4 | 2 | 2 | 5 | 3 | 4 | 0 | 1 |  |  |
|  | 2 | **Fiber** |  | 2021-07-01 | 2021-09-14 |  |  |  |  |  |  |  |  |  |  |  |  |  |  |  |  |  |  |  |  |  |
| MWH06.C3.C2360 |  | EPMS Pull Wire / Term / Test | 12d | 2021-07-01 A | 2021-07-16 A | MWH06.C3.C2310, MWH06.C3.C2320 FF+6d, MWH06.D6.C3.C2130, MWH06.C3.C2420 SS+7d, MWH06-10530 | 100% |  |  |  |  |  | LINX [1440 h] | 1553 | 1 | 3 | 7 | 2 | 2 | 5 | 6 | 7 |  |  |  |  |
| MWH06.C3.C2400 |  | BMS Pull Wire / Term / Test | 12d | 2021-07-01 A | 2021-07-16 A | MWH06.C3.C2360 SS, MWH06-10530 | 100% |  |  |  |  |  | LINX [1440 h] | 1555 | 1 | 3 | 7 | 2 | 2 | 5 | 6 | 7 |  |  |  |  |
| MWH06.C3.C2460 |  | Install/Dress/Test Production Fiber (Includes MOR rack set & Fiber runner) | 20d | 2021-07-17 A | 2021-09-14 | MWH06.C2.C4420, MWH06.C3.C2400, MWH06-10530 | 45% | 11d | 2021-08-20 | 2021-09-14 | 21.1d | 0d | LINX [1440 h] | 1556 | 1 | 3 | 7 | 2 | 2 | 5 |  | 4 |  |  |  |  |
|  | 3 | **Special Systems** |  | 2021-06-01 | 2021-06-30 |  |  |  |  |  |  |  |  |  |  |  |  |  |  |  |  |  |  |  |  |  |
| MWH06.C3.C2320 |  | Fire Alarm System | 10d | 2021-06-01 A | 2021-06-30 A | MWH06.C3.C2310, MWH06-10531, MWH06-10530 | 100% |  | 2021-06-30 | 2021-07-13 |  |  | VECA Electric [600 h] | 1554 | 1 | 3 |  | 2 | 2 | 5 | 6 | 3 |  |  |  |  |
| MWH06.C3.C2430 |  | Controls Installation | 12d | 2021-06-14 A | 2021-06-26 A | MWH06.C3.C2310, MWH06.C3.C2320, MWH06-10531, MWH06-10530 | 100% |  |  |  |  |  | VECA Electric [720 h] | 1551 | 1 | 3 | 4 | 2 | 2 | 5 | 6 | 3 | 0 | 1 |  |  |

| ID | WBS | Activity | Duration | Start | Finish | Predecessors | Complete | Remaining | Planned start | Planned finish | Total float | Free float | Resources | MSP Activity ID | HRA - Safety Level | COLO | TRADE | MSFT-Funding Releases | CELL | WBS | MWH06- TRADES | HRA - Required Permit- Priority-1 | HRA - Required Permit- Priority-2 | VECA % Complete | VECA- Changed | Critical Path mer to COLO |
| --- | --- | --- | --- | --- | --- | --- | --- | --- | --- | --- | --- | --- | --- | --- | --- | --- | --- | --- | --- | --- | --- | --- | --- | --- | --- | --- |
|  | 13 | **Data Hall Cell 4** |  | 2021-02-03 | 2021-10-08 |  |  |  |  |  |  |  |  |  |  |  |  |  |  |  |  |  |  |  |  |  |
|  | 1 | **Electrical** |  | 2021-02-03 | 2021-08-12 |  |  |  |  |  |  |  |  |  |  |  |  |  |  |  |  |  |  |  |  |  |
| MWH06.C3.C4280 |  | HAC Installation | 3d | 2021-02-03 A | 2021-02-20 A | MWH06.C3.C2280, MWH06.C3.C4260, MWH06.C3.C4230, MWH06.C3.C4260 FF, MWH06.C3.C3250 | 100% |  | 2021-04-12 | 2021-04-14 |  |  | TCM Mechanical [480 h] | 1562 | 4 | 3 | 51 | 2 | 4 | 5 | 26 | 4 | 11 |  |  |  |
| MWH06.C3.C4310 |  | Cable Tray Installation | 12d | 2021-03-25 A | 2021-04-24 A | MWH06.C3.C2310, MWH06.C3.C4280 | 100% |  | 2021-03-31 | 2021-04-14 |  |  | VECA Electric [1440 h] | 1561 | 2 | 3 | 4 | 2 | 4 | 5 |  | 3 | 4 | 0 |  |  |
| MWH06.C3.C4340 |  | Power Bus Installation | 5d | 2021-04-19 A | 2021-04-30 A | MWH06.C3.C4310, MWH06.C3.C2340, MWH06-10531, MWH06-10530 | 100% |  | 2021-06-07 | 2021-06-11 |  |  | VECA Electric [1200 h] | 493 | 2 | 3 | 4 | 2 | 4 | 5 |  | 4 | 11 | 0 |  |  |
| MWH06.C3.C4360 |  | PDU's Installation | 3d | 2021-04-29 A | 2021-05-01 A | MWH06.C3.C4340, MWH06.C3.E1440, MWH06.C3.E1450, MWH06-10531, MWH06-10530 | 100% |  | 2021-06-14 | 2021-06-16 |  |  | VECA Electric [180 h] | 1560 | 3 | 3 | 4 | 2 | 4 | 5 | 26 | 11 |  | 0 |  |  |
| MWH06.C3.C4430 |  | Pull/term/Test PDU to Power bus | 18d | 2021-06-30 A | 2021-07-22 A | MWH06-10399, MWH06.C3.C4360, MWH06.C3.C4340, MWH06-10531, MWH06-10530 | 100% |  |  |  |  |  | VECA Electric [1440 h] | 1468 | 2 | 3 | 4 | 2 | 4 | 3 | 26 | 4 | 11 | 0 | 1 | 3 |
| MWH06-9782 |  | Below Ceiling Branch Conduit Rough-in | 6d | 2021-07-01 A | 2021-07-09 A | MWH06-9787, MWH06.C3.C4280, MWH06-10531, MWH06-10530 | 100% |  | 2021-07-31 | 2021-08-06 |  |  | VECA Electric [240 h] | 1384 | 1 | 3 | 4 | 2 | 4 | 1 |  | 3 | 4 |  |  |  |
| MWH06.C3.C4420 |  | Pull / Term / Test Conductors ( MER to PDU) | 21d | 2021-07-12 A | 2021-08-05 A | MWH06-10580, MWH06-10572, MWH06-10574, MWH06-10399, MWH06.C3.C4360 FF+8d, MWH06.D6.C3.C4120, MWH06.D6.C3.C4130, MWH06.C3.C4370, MWH06.D6.C3.C4120 FF, MWH06.C3.C4380 SS+7d, MWH06-9765 SS+8d, MWH06.D6.C3.C4160, MWH06-10531, MWH06-10530 | 100% |  | 2021-07-31 | 2021-08-25 |  |  | VECA Electric [1680 h] | 1563 | 2 | 3 | 4 | 2 | 4 | 5 | 26 | 6 | 4 | 0 |  |  |
| MWH06.C3.C4450 |  | Light Fixtures Installation | 6d | 2021-08-06 A | 2021-08-12 A | MWH06.C3.C4420, MWH06.C3.C4440, MWH06.C3.C4360, MWH06-10531, MWH06-10530 | 100% |  | 2021-08-31 | 2021-09-08 |  |  | VECA Electric [480 h] | 202 | 2 | 3 | 4 | 2 | 4 | 5 |  | 3 | 4 | 0 | 1 |  |
|  | 2 | **Fiber** |  | 2021-07-01 | 2021-10-08 |  |  |  |  |  |  |  |  |  |  |  |  |  |  |  |  |  |  |  |  |  |
| MWH06.C3.C4350 |  | EPMS Pull Wire / Term / Test | 12d | 2021-07-01 A | 2021-07-16 A | MWH06.C3.C4310, MWH06.D6.C3.C4130, MWH06.C3.C4420 SS+7d, MWH06-10530 | 100% |  | 2021-07-31 | 2021-08-13 |  |  | LINX [1440 h] | 1566 | 1 | 3 | 7 | 2 | 4 | 5 |  | 6 | 7 |  |  |  |
| MWH06.C3.C4390 |  | BMS Pull Wire / Term / Test | 12d | 2021-07-01 A | 2021-07-16 A | MWH06.C3.C4350 SS, MWH06-10530 | 100% |  | 2021-07-31 | 2021-08-13 |  |  | LINX [1440 h] | 1567 | 1 | 3 | 7 | 2 | 4 | 5 |  | 6 | 7 |  |  |  |
| MWH06.C3.C4460 |  | Install/Dress/Test Production Fiber (Includes MOR rack set & Fiber runner) | 20d | 2021-07-17 A | 2021-10-08 | MWH06.C3.C2460, MWH06.C3.C4390, MWH06-10530 |  | 20d | 2021-09-15 | 2021-10-08 | 21.1d | 0d | LINX [1440 h] | 1568 | 1 | 3 | 7 | 2 | 4 | 5 |  |  | 4 |  |  |  |
|  | 3 | **Special Systems** |  | 2021-06-14 | 2021-07-14 |  |  |  |  |  |  |  |  |  |  |  |  |  |  |  |  |  |  |  |  |  |
| MWH06.C3.C4440 |  | Controls Installation | 12d | 2021-06-14 A | 2021-06-26 A | MWH06.C3.C4310, MWH06.C3.C4330, MWH06-10531, MWH06-10530 | 100% |  |  |  |  |  | VECA Electric [720 h] | 1564 | 1 | 3 | 4 | 2 | 4 | 5 |  | 6 | 3 | 0 | 1 |  |
| MWH06.C3.C4330 |  | Fire Alarm System | 10d | 2021-07-01 A | 2021-07-14 A | MWH06.C3.C4310, MWH06-10531, MWH06-10530 | 100% |  | 2021-07-31 | 2021-08-11 |  |  | VECA Electric [600 h] | 1570 | 1 | 3 |  | 2 | 4 | 5 |  | 6 | 3 |  |  |  |
|  | 6 | **COLO 4 Fitout** |  | 2020-10-12 | 2021-11-30 |  |  |  |  |  |  |  |  |  |  |  |  |  |  |  |  |  |  |  |  |  |
|  | 3 | **Interior Buildout** |  | 2020-12-28 | 2021-07-07 |  |  |  |  |  |  |  |  |  |  |  |  |  |  |  |  |  |  |  |  |  |
|  | 1 | **Cell 1 Datahall** |  | 2020-12-28 | 2021-02-27 |  |  |  |  |  |  |  |  |  |  |  |  |  |  |  |  |  |  |  |  |  |
|  | 1 | **Partitions** |  | 2020-12-28 | 2021-01-21 |  |  |  |  |  |  |  |  |  |  |  |  |  |  |  |  |  |  |  |  |  |
| MWH06.C4.C1140 |  | Frame wall & MEPFP In wall roughin | 5d | 2020-12-28 A | 2021-01-08 A | MWH06.C3.C3060, MWH06.C4.CS1090, MWH06-C4.P1500, MWH06-9915 | 100% |  | 2021-01-02 | 2021-01-07 |  |  | TCM Mechanical [400 h]; VECA Electric [400 h] | 1577 | 2 | 4 | 6 | 2 | 1 | 1 | 23 | 3 | 4 |  |  |  |
| MWH06.C4.C1190 |  | Overhead MEPFP Rough-In | 10d | 2021-01-07 A | 2021-01-21 A | MWH06.C4.CS1090, MWH-06-04-SOG-F, MWH-06-04-DRY-F, MWH06.C3.C3180 | 100% |  | 2021-02-01 | 2021-02-12 |  |  | VECA Electric [400 h] | 1576 | 2 | 4 | 4 | 2 | 1 | 1 |  | 3 | 4 | 100 |  |  |
| MWH06.C4.C1220 |  | Early Topout | 3d | 2021-01-11 A | 2021-01-14 A | MWH06.C4.C1140, MWH06.C3.C4230, MWH06.C4.CS1090 | 100% |  | 2021-02-01 | 2021-02-03 |  |  | PCI [600 h] | 1575 | 2 | 4 | 6 | 2 | 1 | 1 |  | 3 | 4 |  |  |  |

Notes:
- MWH06.C4.C1190: VECA Update Notes: Expecting to start 12/4 after sprinkler lines are far enough along

| ID | WBS | Activity | Duration | Start | Finish | Predecessors | Complete | Planned start | Planned finish | Resources | MSP Activity ID | COLO | TRADE | MSFT-Funding Releases | CELL | WBS | HRA - Required Permit- Priority-1 | HRA - Required Permit- Priority-2 | VECA % Complete | HRA - Safety Level | MWH06- TRADES | Critical Path-1 | VECA- Changed |
| --- | --- | --- | --- | --- | --- | --- | --- | --- | --- | --- | --- | --- | --- | --- | --- | --- | --- | --- | --- | --- | --- | --- | --- |
|  | 2 | **Finishes** |  | 2021-02-15 | 2021-02-27 |  |  |  |  |  |  |  |  |  |  |  |  |  |  |  |  |  |  |
| MWH06.C4.C1260 |  | Datahall Finishes | 12d | 2021-02-15 A | 2021-02-27 A | MWH06.C4.C1220, MWH06.C4.CS1120 | 100% | 2021-03-31 | 2021-04-14 | PCI [480 h] | 213 | 4 | 6 | 2 | 1 | 1 | 3 | 4 |  |  |  |  |  |
|  | 2 | **Cell 3 Datahall** |  | 2021-01-07 | 2021-03-01 |  |  |  |  |  |  |  |  |  |  |  |  |  |  |  |  |  |  |
|  | 1 | **Partitions** |  | 2021-01-07 | 2021-01-21 |  |  |  |  |  |  |  |  |  |  |  |  |  |  |  |  |  |  |
| MWH06.C4.C3180 |  | Overhead MEPFP Rough-In | 10d | 2021-01-07 A | 2021-01-21 A | MWH06.C4.C1190, MWH-06-04-SOG-F, MWH-06-04-DRY-F | 100% | 2021-02-01 | 2021-02-12 | VECA Electric [400 h] | 1583 | 4 | 4 | 2 | 3 | 1 | 3 | 4 | 100 | 2 |  |  |  |
| MWH06.C4.C3130 |  | Frame wall & MEPFP In wall roughin | 5d | 2021-01-11 A | 2021-01-15 A | MWH06.C4.C1140 | 100% | 2021-01-18 | 2021-01-22 | TCM Mechanical [400 h]; VECA Electric [400 h] | 1578 | 4 | 6 | 2 | 3 | 1 | 3 | 4 |  | 2 | 23 |  |  |
| MWH06.C4.C3190 |  | Early Topout | 3d | 2021-01-18 A | 2021-01-20 A | MWH06.C4.C3130, MWH06.C4.C1220, MWH06.C4.CS1090 | 100% | 2021-02-01 | 2021-02-03 | PCI [600 h] | 1582 | 4 | 6 | 2 | 3 | 1 | 3 | 4 |  | 2 |  |  |  |
|  | 2 | **Finishes** |  | 2021-02-22 | 2021-03-01 |  |  |  |  |  |  |  |  |  |  |  |  |  |  |  |  |  |  |
| MWH06.C4.C3220 |  | Datahall Finishes | 12d | 2021-02-22 A | 2021-03-01 A | MWH06.C4.C3190, MWH06.C4.CS1120, MWH06.C4.C1260 | 100% | 2021-04-15 | 2021-04-28 | PCI [480 h] | 221 | 4 | 6 | 2 | 3 | 1 | 3 | 4 |  |  |  |  |  |
|  | 3 | **Cell 2 Datahall** |  | 2020-12-28 | 2021-02-27 |  |  |  |  |  |  |  |  |  |  |  |  |  |  |  |  |  |  |
|  | 1 | **Partitions** |  | 2020-12-28 | 2021-01-21 |  |  |  |  |  |  |  |  |  |  |  |  |  |  |  |  |  |  |
| MWH06.C4.C2140 |  | Frame wall & MEPFP In wall roughin | 5d | 2020-12-28 A | 2021-01-08 A | MWH06.C3.C4060, MWH06-9915 | 100% | 2021-01-02 | 2021-01-07 | TCM Mechanical [400 h]; VECA Electric [400 h] | 1589 | 4 | 6 | 2 | 2 | 1 | 3 | 4 |  | 2 | 23 |  |  |
| MWH06.C4.C2190 |  | Overhead MEPFP Rough-In | 10d | 2021-01-07 A | 2021-01-21 A | MWH06.C4.CS1090, MWH-06-04-SOG-F, MWH-06-04-DRY-F | 100% | 2021-02-01 | 2021-02-12 | VECA Electric [400 h] | 1588 | 4 | 4 | 2 | 2 | 1 | 3 | 4 | 100 | 2 |  |  |  |
| MWH06.C4.C2220 |  | Early Topout | 3d | 2021-01-11 A | 2021-01-14 A | MWH06.C3.C4230, MWH06.C4.C2140, MWH06.C4.CS1090, MWH06.C4.C2190 SS+6d | 100% | 2021-02-09 | 2021-02-11 | PCI [600 h] | 1587 | 4 | 6 | 2 | 2 | 1 | 3 | 4 |  | 2 |  |  |  |
|  | 2 | **Finishes** |  | 2021-02-15 | 2021-02-27 |  |  |  |  |  |  |  |  |  |  |  |  |  |  |  |  |  |  |
| MWH06.C4.C2250 |  | Datahall Finishes | 12d | 2021-02-15 A | 2021-02-27 A | MWH06.C4.C2220, MWH06.C4.CS1120, MWH06.C4.C2190 | 100% | 2021-03-31 | 2021-04-14 | PCI [480 h] | 257 | 4 | 6 | 2 | 2 | 1 | 3 | 4 |  |  |  |  |  |
|  | 4 | **Cell 4 Datahall** |  | 2021-01-11 | 2021-03-01 |  |  |  |  |  |  |  |  |  |  |  |  |  |  |  |  |  |  |
|  | 1 | **Partitions** |  | 2021-01-11 | 2021-01-21 |  |  |  |  |  |  |  |  |  |  |  |  |  |  |  |  |  |  |
| MWH06.C4.C4130 |  | Frame wall & MEPFP In wall roughin | 5d | 2021-01-11 A | 2021-01-15 A | MWH06.C4.C2140 | 100% | 2021-01-18 | 2021-01-22 | TCM Mechanical [400 h]; VECA Electric [400 h] | 1590 | 4 | 6 | 2 | 4 | 1 | 3 | 4 |  | 2 | 23 |  |  |
| MWH06.C4.C4180 |  | Overhead MEPFP Rough-In | 10d | 2021-01-15 A | 2021-01-21 A | MWH06.C4.C2190, MWH-06-04-SOG-F, MWH-06-04-DRY-F | 100% | 2021-02-01 | 2021-02-12 | VECA Electric [400 h] | 1595 | 4 | 4 | 2 | 4 | 1 | 3 | 4 | 100 | 2 |  |  |  |
| MWH06.C4.C4190 |  | Early Topout | 3d | 2021-01-18 A | 2021-01-21 A | MWH06.C4.C4130, MWH06.C4.CS1090, MWH06.C4.C4180 SS+5d | 100% | 2021-02-08 | 2021-02-10 | PCI [600 h] | 1594 | 4 | 6 | 2 | 4 | 1 | 3 | 4 |  | 2 |  |  |  |
|  | 2 | **Finishes** |  | 2021-02-22 | 2021-03-01 |  |  |  |  |  |  |  |  |  |  |  |  |  |  |  |  |  |  |
| MWH06.C4.C4210 |  | Datahall Finishes | 12d | 2021-02-22 A | 2021-03-01 A | MWH06.C4.C4190, MWH06.C4.CS1120, MWH06.C4.C4180, MWH06.C4.C2250 | 100% | 2021-04-15 | 2021-04-28 | PCI [480 h] | 1597 | 4 | 6 | 2 | 4 | 1 | 3 | 4 |  |  |  |  |  |
|  | 5 | **Cell 1 Mechanical Corridor** |  | 2020-12-28 | 2021-06-18 |  |  |  |  |  |  |  |  |  |  |  |  |  |  |  |  |  |  |
|  | 1 | **Partitions** |  | 2020-12-28 | 2021-06-18 |  |  |  |  |  |  |  |  |  |  |  |  |  |  |  |  |  |  |
| MWH06.C4.C1010 |  | Frame & Top out | 8d | 2020-12-28 A | 2021-01-08 A | MWH06.C4.C1140 SS, MWH06.C4.CS1090, MWH06-9915 | 100% | 2021-01-02 | 2021-01-11 | PCI [480 h] | 1600 | 4 | 6 | 2 | 1 | 2 | 3 |  |  | 2 |  |  |  |
| MWH06.C4.C1150 |  | Electrical surface mounted Rough-in Above AHU | 5d | 2021-02-16 A | 2021-02-18 A | MWH06.C4.C1130 | 100% | 2021-03-15 | 2021-03-19 | VECA Electric [960 h] | 1601 | 4 | 4 | 2 | 1 | 2 | 3 | 11 | 0 | 2 |  |  |  |
| MWH06.C4.C1130 |  | OverHead MEPFP Rough-In | 12d | 2021-02-19 A | 2021-03-06 A | MWH06.C4.C1190 SS, MWH-06-04-SOG-F, MWH-06-04-DRY-F | 100% | 2021-04-30 | 2021-05-14 | TCM Mechanical [400 h]; VECA Electric [960 h] | 374 | 4 | 4 | 2 | 1 | 2 | 3 | 4 | 0 | 2 | 23 |  |  |
| MWH06-9766 |  | Remaining MER raceway across Mech chase | 13d | 2021-06-01 A | 2021-06-18 A | MWH06.C4.C1010, MWH06.C4.C1170, MWH06.C4.E1360, MWH06-10531, MWH06-10530 | 100% | 2021-06-01 | 2021-06-16 | TCM Mechanical [400 h]; VECA Electric [300 h] | 340 | 4 | 4 | 1C | 1 | 2 | 3 |  |  | 2 | 23 | 1 | 1 |

Notes:
- MWH06.C4.C3180: VECA Update Notes: Started as soon as we had access after Cascade completed, some lighting will be added to above ceiling
- MWH06.C4.C2190: VECA Update Notes: Starting in 4.2 as this is the only cell that is currently available, Cascade working on mains and drops
- MWH06.C4.C4180: VECA Update Notes: Started as soon as we had access after Cascade completed, some lighting will be added to above ceiling
- MWH06.C4.C1150: VECA Update Notes: No curb, framing, walls or tape and paint in colo 4 mech chase as of 12/14/20
- MWH06.C4.C1130: VECA Update Notes: Expecting to start 12/4 after sprinkler lines are far enough along Correction the walls and curb in the mech chase are not installed yet preventing our start

| ID | WBS | Activity | Duration | Start | Finish | Predecessors | Complete | Planned start | Planned finish | Resources | MSP Activity ID | HRA - Safety Level | COLO | TRADE | MSFT-Funding Releases | CELL | WBS | HRA - Required Permit- Priority-1 | VECA % Complete | HRA - Required Permit- Priority-2 | MWH06- TRADES | Critical Path-1 | VECA- Changed |
| --- | --- | --- | --- | --- | --- | --- | --- | --- | --- | --- | --- | --- | --- | --- | --- | --- | --- | --- | --- | --- | --- | --- | --- |
|  | 2 | **Finishes** |  | 2021-01-09 | 2021-02-01 |  |  |  |  |  |  |  |  |  |  |  |  |  |  |  |  |  |  |
| MWH06.C4.C1200 |  | Mechanical Corridor Finishes | 18d | 2021-01-09 A | 2021-02-01 A | MWH06.C4.C1150, MWH06.C4.C1010 | 100% | 2021-04-15 | 2021-05-06 | PCI [180 h] | 258 | 1 | 4 | 6 | 2 | 1 | 2 |  |  |  |  |  |  |
|  | 6 | **Cell 3 Mechanical Corridor** |  | 2021-01-09 | 2021-06-22 |  |  |  |  |  |  |  |  |  |  |  |  |  |  |  |  |  |  |
|  | 1 | **Partitions** |  | 2021-01-09 | 2021-06-22 |  |  |  |  |  |  |  |  |  |  |  |  |  |  |  |  |  |  |
| MWH06.C4.C3010 |  | Frame & Top out | 8d | 2021-01-09 A | 2021-01-20 A | MWH06.C4.C1010 FF, MWH06.C4.CS1090, MWH06.C4.C1010 | 100% | 2021-03-31 | 2021-04-08 | PCI [480 h] | 1605 | 2 | 4 | 6 | 2 | 3 | 2 | 3 |  |  |  |  |  |
| MWH06.C4.C3150 |  | Electrical surface mounted Rough-in Above AHU | 5d | 2021-02-18 A | 2021-02-20 A | MWH06.C4.C3140 | 100% | 2021-03-30 | 2021-04-03 | VECA Electric [960 h] | 1606 | 2 | 4 | 4 | 2 | 3 | 2 | 3 | 0 | 11 |  |  |  |
| MWH06.C4.C3140 |  | OverHead MEPFP Rough-In | 12d | 2021-02-22 A | 2021-03-09 A | MWH06.C4.C1130, MWH-06-04-SOG-F, MWH-06-04-DRY-F | 100% | 2021-05-15 | 2021-05-29 | TCM Mechanical [400 h]; VECA Electric [960 h] | 368 | 2 | 4 | 4 | 2 | 3 | 2 | 3 | 0 | 4 | 23 |  |  |
| MWH06-9767 |  | Remaining MER raceway across Mech chase | 13d | 2021-06-01 A | 2021-06-22 A | MWH06.C4.C3010, MWH06.C4.C1170, MWH06.C4.E1380, MWH06-10531, MWH06-10530 | 100% | 2021-06-01 | 2021-06-16 | TCM Mechanical [400 h]; VECA Electric [300 h] | 340 | 2 | 4 | 4 | 1C | 1 | 2 | 3 |  |  | 23 | 1 | 1 |
|  | 2 | **Finishes** |  | 2021-01-21 | 2021-02-13 |  |  |  |  |  |  |  |  |  |  |  |  |  |  |  |  |  |  |
| MWH06.C4.C3240 |  | Mechanical Corridor Finishes | 18d | 2021-01-21 A | 2021-02-13 A | MWH06.C4.C3150, MWH06.C4.C3010 | 100% | 2021-04-29 | 2021-05-20 | PCI [180 h] | 1608 | 1 | 4 | 6 | 2 | 3 | 2 |  |  |  |  |  |  |
|  | 7 | **Cell 2 Mechanical Corridor** |  | 2020-12-28 | 2021-06-16 |  |  |  |  |  |  |  |  |  |  |  |  |  |  |  |  |  |  |
|  | 1 | **Partitions** |  | 2020-12-28 | 2021-06-16 |  |  |  |  |  |  |  |  |  |  |  |  |  |  |  |  |  |  |
| MWH06.C4.C2010 |  | Frame & Top out | 8d | 2020-12-28 A | 2021-02-02 A | MWH06.C4.C2140 SS, MWH06.C4.CS1090, MWH06-9915 | 100% | 2021-01-02 | 2021-01-11 | PCI [480 h] | 1611 | 2 | 4 | 6 | 2 | 2 | 2 | 3 |  |  |  |  |  |
| MWH06.C4.C2150 |  | Electrical surface mounted Rough-in Above AHU | 5d | 2021-01-29 A | 2021-02-04 A | MWH06.C4.C2130 | 100% | 2021-03-15 | 2021-03-19 | VECA Electric [960 h] | 1612 | 2 | 4 | 4 | 2 | 2 | 2 | 3 | 0 | 11 |  |  |  |
| MWH06.C4.C2130 |  | OverHead MEPFP Rough-In | 12d | 2021-02-05 A | 2021-02-20 A | MWH06.C4.C1130 SS, MWH-06-04-SOG-F, MWH-06-04-DRY-F | 100% | 2021-04-30 | 2021-05-14 | TCM Mechanical [400 h]; VECA Electric [960 h] | 370 | 2 | 4 | 4 | 2 | 2 | 2 | 3 | 0 | 4 | 23 |  |  |
| MWH06-9768 |  | Remaining MER raceway across Mech chase | 13d | 2021-06-01 A | 2021-06-16 A | MWH06.C4.C2010, MWH06.C4.C2170, MWH06.C4.E1370, MWH06-10531, MWH06-10530 | 100% |  |  | TCM Mechanical [400 h]; VECA Electric [300 h] | 340 | 2 | 4 | 4 | 1C | 1 | 2 | 3 |  |  | 23 | 1 | 1 |
|  | 2 | **Finishes** |  | 2021-02-03 | 2021-02-25 |  |  |  |  |  |  |  |  |  |  |  |  |  |  |  |  |  |  |
| MWH06.C4.C2200 |  | Mechanical Corridor Finishes | 18d | 2021-02-03 A | 2021-02-25 A | MWH06.C4.C2150, MWH06.C4.C2010 | 100% | 2021-04-15 | 2021-05-06 | PCI [180 h] | 1614 | 1 | 4 | 6 | 2 | 2 | 2 |  |  |  |  |  |  |
|  | 8 | **Cell D4Mechanical Corridor** |  | 2021-02-03 | 2021-07-07 |  |  |  |  |  |  |  |  |  |  |  |  |  |  |  |  |  |  |
|  | 1 | **Partitions** |  | 2021-02-03 | 2021-07-07 |  |  |  |  |  |  |  |  |  |  |  |  |  |  |  |  |  |  |
| MWH06.C4.C4010 |  | Frame & Top out | 8d | 2021-02-03 A | 2021-02-13 A | MWH06.C4.C2010 FF, MWH06.C4.CS1090, MWH06.C4.C2010 | 100% | 2021-03-31 | 2021-04-08 | PCI [480 h] | 1617 | 2 | 4 | 6 | 2 | 4 | 2 | 3 |  |  |  |  |  |
| MWH06.C4.C4150 |  | Electrical surface mounted Rough-in Above AHU | 5d | 2021-02-12 A | 2021-02-19 A | MWH06.C4.C4140 | 100% | 2021-03-30 | 2021-04-03 | VECA Electric [960 h] | 1618 | 2 | 4 | 4 | 2 | 4 | 2 | 3 | 0 | 11 |  |  |  |
| MWH06.C4.C4140 |  | OverHead MEPFP Rough-In | 12d | 2021-02-22 A | 2021-03-09 A | MWH06.C4.C2130, MWH-06-04-SOG-F, MWH-06-04-DRY-F | 100% | 2021-05-15 | 2021-05-29 | TCM Mechanical [400 h]; VECA Electric [960 h] | 372 | 2 | 4 | 4 | 2 | 4 | 2 | 3 | 0 | 4 | 23 |  |  |
| MWH06-9769 |  | Remaining MER raceway across Mech chase | 13d | 2021-06-21 A | 2021-07-07 A | MWH-06-04-ROJ-F, MWH06.C4.C4010, MWH06.C4.C2170, MWH06.C4.E1390, MWH06-10531, MWH06-10530 | 100% | 2021-06-30 | 2021-07-16 | TCM Mechanical [400 h]; VECA Electric [300 h] | 340 | 2 | 4 | 4 | 1C | 1 | 2 | 3 |  |  | 23 | 1 | 1 |

Notes:
- MWH06.C4.C3140: VECA Update Notes: No curb, framing, walls or tape and paint in colo 4 mech chase as of 12/14/20
- MWH06.C4.C2150: VECA Update Notes: No curb, framing, walls or tape and paint in colo 4 mech chase as of 12/14/20
- MWH06.C4.C2130: VECA Update Notes: Expecting to start 12/4 after sprinkler lines are far enough along Correction the walls and curb in the mech chase are not installed yet preventing our start
- MWH06.C4.C4140: VECA Update Notes: No curb, framing, walls or tape and paint in colo 4 mech chase as of 12/14/20

| ID | WBS | Activity | Duration | Start | Finish | Predecessors | Complete | Planned start | Planned finish | Resources | MSP Activity ID | HRA - Safety Level | COLO | TRADE | MSFT-Funding Releases | CELL | WBS | VECA % Complete | HRA - Required Permit- Priority-1 | HRA - Required Permit- Priority-2 | Discipline | MER | Critical Path mer to COLO | VECA- Changed |
| --- | --- | --- | --- | --- | --- | --- | --- | --- | --- | --- | --- | --- | --- | --- | --- | --- | --- | --- | --- | --- | --- | --- | --- | --- |
|  | 2 | **Finishes** |  | 2021-02-15 | 2021-03-10 |  |  |  |  |  |  |  |  |  |  |  |  |  |  |  |  |  |  |  |
| MWH06.C4.C4230 |  | Mechanical Corridor Finishes | 18d | 2021-02-15 A | 2021-03-10 A | MWH06.C4.C4150, MWH06.C4.C4010 | 100% | 2021-04-29 | 2021-05-20 | PCI [180 h] | 1620 | 1 | 4 | 6 | 2 | 4 | 2 |  |  |  |  |  |  |  |
|  | 4 | **Systems Buildout** |  | 2020-10-12 | 2021-11-30 |  |  |  |  |  |  |  |  |  |  |  |  |  |  |  |  |  |  |  |
|  | 1 | **Exterior Equipment Cell 1** |  | 2020-10-12 | 2021-08-24 |  |  |  |  |  |  |  |  |  |  |  |  |  |  |  |  |  |  |  |
|  | 1 | **Electrical** |  | 2020-10-12 | 2021-08-24 |  |  |  |  |  |  |  |  |  |  |  |  |  |  |  |  |  |  |  |
| MWH06.C4.C1020 |  | Electrical Underground Rough-In | 12d | 2020-10-12 A | 2020-10-23 A | MWH06.C3.C3010, MWH06.C4.CS1060, MWH06-9914 | 100% | 2020-11-02 | 2020-11-16 | VECA Electric [960 h] | 53 | 2 | 4 | 4 | 2 | 1 | 3 | 100 |  |  |  |  |  |  |
| MWH06.C4.C1030 |  | Exterior Equipment Pads - for UPM's | 4d | 2020-12-01 A | 2020-12-04 A | MWH06.C3.C3020, MWH06.C4.C1020 SS | 100% | 2021-01-02 | 2021-01-06 | OLSON [400 h]; VECA Electric [80 h] | 405 | 2 | 4 | 2 | 2 | 1 | 3 |  | 1 | 4 |  |  |  |  |
| MWH06.C4.C1060 |  | Exterior Equipment Pads - Electrical | 12d | 2020-12-07 A | 2020-12-10 A | MWH06.C3.C3050 SS+6d, MWH06.C4.C1020 | 100% | 2021-01-02 | 2021-01-15 | OLSON [1200 h]; VECA Electric [240 h] | 254 | 2 | 4 | 4 | 2 | 1 | 3 | 100 | 1 | 4 | CONC | 1 |  |  |
| MWH06.C4.C1040 |  | Set Electrical Equipment-UPM | 4d | 2020-12-30 A | 2020-12-31 A | MWH06.C4.C1030, MWH06.C4.E1010, MWH06.C4.E1000, MWH06-9915 | 100% | 2021-01-07 | 2021-01-11 | VECA Electric [80 h] | 766 | 3 | 4 | 4 | 2 | 1 | 3 | 0 | 5 | 4 |  |  |  |  |
| MWH06.C4.C1100 |  | Set Exterior Electrical OFCI Equipment - GEN | 5d | 2021-04-12 A | 2021-04-24 A | MWH06.C4.C1060, MWH06.C4.E1060, MWH06.C4.E1070 | 100% | 2021-04-26 | 2021-05-03 | VECA Electric [200 h] | 1624 | 4 | 4 | 4 | 2 | 1 | 3 | 0 | 5 | 4 |  |  |  |  |
| MWH06.C4.C1230 |  | Lift & Set MER in Place | 5d | 2021-04-27 A | 2021-04-27 A | MWH06.C4.E1360, MWH06.C4.E1120, MWH06.C4.C1060, MWH06-C4.P1600, MWH06.C3.C4270, MWH06-10530 | 100% | 2021-06-01 | 2021-06-05 | VECA Electric [120 h] | 1626 | 4 | 4 | 4 | 2 | 1 | 3 | 0 | 5 | 4 |  | 4 | 4 |  |
| MWH06.C4.C1290 |  | Assemble MER & Complete Shipping Split (SE) | 10d | 2021-04-27 A | 2021-05-13 A | MWH06.C4.C1230, MWH06-10530 | 100% | 2021-06-07 | 2021-06-18 |  | 1632 | 2 | 4 |  | 2 | 1 | 3 |  | 5 | 4 |  | 4 | 4 |  |
| MWH06.C4.C1280 |  | Steel Support for OH Conductors & Cable Tray Installation | 4d | 2021-04-28 A | 2021-05-06 A | MWH06.C4.C1060, MWH06.C4.C1230, MWH06-10530 | 100% | 2021-06-07 | 2021-06-10 | Steel [160 h] | 1625 | 3 | 4 | 3 | 2 | 1 | 3 |  | 5 | 2 |  |  |  |  |
| MWH06.C4.C1320 |  | GEN & UPM to MER Cable Bus Instal | 10d | 2021-06-14 A | 2021-06-25 A | MWH06.C4.C1290, MWH06.C4.C1280, MWH06-9943, MWH06.C4.C1100, MWH06-10315, MWH06-10531, MWH06-10530, MWH06-10560, MWH06-10572 | 100% | 2021-07-14 | 2021-07-26 | VECA Electric | 1628 | 2 | 4 | 4 | 2 | 1 | 3 | 0 | 5 | 4 |  |  | 4 | 1 |
| MWH06-10352 |  | Generator & Utility Power Pull | 4d | 2021-06-26 A | 2021-07-15 A | MWH06-10580, MWH06-10574, MWH06-10424, MWH06.C4.C1100, MWH06.C4.C1280, MWH06.D6.C4.C1140, MWH06.C4.C1320, MWH06-10531, MWH06-10530, MWH06-10560, MWH06-10572 | 100% | 2021-07-28 | 2021-07-31 | VECA Electric [320 h] | 1627 | 2 | 4 | 4 | 2 | 1 | 3 | 0 | 6 | 11 |  |  | 4 | 1 |
| MWH06.C4.C1340 |  | Electrical Feeders to Mechanical Equipment Pull-Test-Term | 20d | 2021-07-20 A | 2021-08-24 A | MWH06-10576 FF+12d, MWH06.C4.C1290, MWH06.C4.C1110, MWH06.C4.C1100, MWH06.C4.C1280, MWH06.D6.C4.C1130, MWH06-9943, MWH06-9766 SS+8d, MWH06-10531, MWH06-10530, MWH06-10572, MWH06.C4.C1380 SS | 100% | 2021-08-06 | 2021-08-30 | VECA Electric [1080 h] | 1629 | 2 | 4 | 4 | 2 | 1 | 3 | 0 | 6 | 11 |  |  | 4 |  |
| MWH06.C4.C1380 |  | Generator & Utility Power Test-Term | 8d | 2021-07-20 A | 2021-07-28 A | MWH06-10580, MWH06-10574, MWH06.C4.C1320, MWH06.C4.C1100, MWH06.C4.C1280, MWH06.D6.C4.C1140, MWH06-10352, MWH06-10531, MWH06-10530, MWH06-10561, MWH06-10572 | 100% | 2021-08-06 | 2021-08-16 | VECA Electric [640 h] | 1627 | 2 | 4 | 4 | 2 | 1 | 3 | 0 | 6 | 11 |  |  | 4 |  |
|  | 2 | **Mechanical** |  | 2020-10-12 | 2021-05-07 |  |  |  |  |  |  |  |  |  |  |  |  |  |  |  |  |  |  |  |
| MWH06.C4.C1000 |  | Mechanical/Plumbing Underground Rough-In | 12d | 2020-10-12 A | 2020-10-23 A | MWH06.C3.C1000, MWH06-9914 | 100% | 2020-11-02 | 2020-11-16 | TCM Mechanical [720 h] | 1634 | 1 | 4 | 51 | 2 | 1 | 3 |  |  |  |  |  |  |  |
| MWH06.C4.C1070 |  | Exterior Equipment Pads - Mechanical | 12d | 2020-12-07 A | 2020-12-10 A | MWH06.C4.C1060 SS+6d, MWH06.C4.C1000, MWH06.C3.C1060, MWH06.C3.C1060 FF | 100% | 2021-01-09 | 2021-01-23 | OLSON [1200 h]; VECA Electric [240 h] | 256 | 2 | 4 |  | 2 | 1 | 3 |  | 1 | 4 | CONC |  |  |  |
| MWH06.C4.C1080 |  | Steel Supports for Exterior Mechanical Equipment (Fluid Cooler Steel & Pipe Steel Supports) | 4d | 2021-02-01 A | 2021-02-05 A | MWH06.C4.C1070 | 100% | 2021-04-30 | 2021-05-05 | Steel [160 h] | 438 | 3 | 4 | 3 | 2 | 1 | 3 |  | 5 | 2 |  |  |  |  |
| MWH06.C4.C1110 |  | Set Exterior Mechanical OFCI Equipment (FC / WTE / Pumps) | 12d | 2021-02-15 A | 2021-03-03 A | MWH06.C4.C1080, MWH06.C4.E1140, MWH06.C4.E1150, MWH06-C4.P1700 | 100% | 2021-05-06 | 2021-05-19 | TCM Mechanical [720 h] | 1630 | 3 | 4 | 51 | 2 | 1 | 3 |  | 5 | 4 |  |  |  |  |
| MWH06.C4.C1111 |  | Set Exterior Water Treatment equipment | 2d | 2021-03-03 A | 2021-03-03 A | MWH06.D5.S1000, MWH06.D5.S1030, MWH06.C4.C1070 | 100% | 2021-03-31 | 2021-04-01 | TCM Mechanical [120 h] |  | 2 | 4 |  |  | 1 |  |  | 5 | 4 |  |  |  |  |
| MWH06.C4.C1120 |  | Mechanical Equipment Piping Connections | 6d | 2021-04-30 A | 2021-05-07 A | MWH06.C4.C1110 SS+5d, MWH06.C4.C1111, MWH06.C4.C1111 FF, MWH06-10530 | 100% | 2021-06-30 | 2021-07-08 | TCM Mechanical [720 h] | 1635 | 2 | 4 | 51 | 2 | 1 | 3 |  | 3 | 4 |  |  |  |  |
| MWH06.C4.C1135 |  | Set Gen Stack / Exhaust duct | 3d | 2021-04-30 A | 2021-05-04 A | MWH06.C4.C1100, MWH06-10530 | 100% | 2021-06-30 | 2021-07-02 | TCM Mechanical [60 h]; Steel [120 h] |  | 4 | 4 | 51 |  | 1 | 3 |  | 5 | 4 |  |  |  |  |

Notes:
- MWH06.C4.C1040: VECA Update Notes: UPMs OFCI not onsite yet
- MWH06-10352: VECA Update Notes: Incentive is on the start and finish of the last Cell in a COLO
- MWH06.C4.C1380: VECA Update Notes: Incentive is on the start and finish of the last Cell in a COLO

| ID | WBS | Activity | Duration | Start | Finish | Predecessors | Complete | Remaining | Planned start | Planned finish | Total float | Free float | Expected finish | Resources | MSP Activity ID | HRA - Safety Level | COLO | MSFT-Funding Releases | CELL | WBS | HRA - Required Permit- Priority-1 | HRA - Required Permit- Priority-2 | VECA % Complete | TRADE | Discipline | MER | Critical Path mer to COLO | VECA- Changed |
| --- | --- | --- | --- | --- | --- | --- | --- | --- | --- | --- | --- | --- | --- | --- | --- | --- | --- | --- | --- | --- | --- | --- | --- | --- | --- | --- | --- | --- |
|  | 3 | **Plumbing** |  |  |  |  |  |  |  |  |  |  |  |  |  |  |  |  |  |  |  |  |  |  |  |  |  |  |
|  | 4 | **Special Systems** |  | 2021-07-20 | 2021-08-09 |  |  |  |  |  |  |  |  |  |  |  |  |  |  |  |  |  |  |  |  |  |  |  |
| MWH06.C4.C1390 |  | Fire Alarm Installation | 12d | 2021-07-20 A | 2021-08-03 A | MWH06.C4.C1110, MWH06.C4.C1100, MWH06.C4.C1340 SS, MWH06.C4.C1120, MWH06-10531, MWH06-10530 | 100% |  | 2021-07-31 | 2021-08-13 |  |  |  | VECA Electric [240 h] | 252 | 1 | 4 | 2 | 1 | 3 | 6 | 3 |  |  |  |  |  |  |
| MWH06.C4.C1410 |  | Controls Installation | 12d | 2021-07-27 A | 2021-08-09 A | MWH06.C4.C1100, MWH06.C4.C1110, MWH06.C4.C1390 SS, MWH06-10531, MWH06-10530 | 100% |  | 2021-07-31 | 2021-08-13 |  |  |  | VECA Electric [720 h] | 246 | 1 | 4 | 2 | 1 | 3 | 6 | 3 | 0 | 4 |  |  |  |  |
|  | 2 | **Exterior Equipment Cell 3** |  | 2020-10-19 | 2021-09-02 |  |  |  |  |  |  |  |  |  |  |  |  |  |  |  |  |  |  |  |  |  |  |  |
|  | 1 | **Electrical** |  | 2020-10-26 | 2021-09-02 |  |  |  |  |  |  |  |  |  |  |  |  |  |  |  |  |  |  |  |  |  |  |  |
| MWH06.C4.C3020 |  | Electrical Underground Rough-In | 12d | 2020-10-26 A | 2020-11-07 A | MWH06.C4.C1020 | 100% |  | 2020-11-02 | 2020-11-16 |  |  |  | VECA Electric [960 h] | 1640 | 2 | 4 | 2 | 3 | 3 |  |  | 100 | 4 |  |  |  |  |
| MWH06.C4.C3030 |  | Exterior Equipment Pads - for UPM's | 4d | 2020-12-01 A | 2020-12-04 A | MWH06.C4.C1030, MWH06.C4.C3020 SS | 100% |  | 2021-01-07 | 2021-01-11 |  |  |  | OLSON [400 h]; VECA Electric [80 h] | 407 | 2 | 4 | 2 | 3 | 3 | 1 | 4 |  | 2 |  |  |  |  |
| MWH06.C4.C3060 |  | Exterior Equipment Pads - Electrical | 12d | 2020-12-07 A | 2020-12-10 A | MWH06.C4.C1060 SS+6d, MWH06.C4.C3020 | 100% |  | 2021-01-02 | 2021-01-15 |  |  |  | OLSON [1200 h]; VECA Electric [240 h] | 332 | 2 | 4 | 2 | 3 | 3 | 1 | 4 | 50 | 4 | CONC | 1 |  |  |
| MWH06.C4.C3040 |  | Set Electrical Equipment-UPM | 4d | 2021-01-04 A | 2021-01-04 A | MWH06.C4.C3030, MWH06.C4.E1080, MWH06.C4.E1090 | 100% |  | 2021-01-11 | 2021-01-14 |  |  |  | VECA Electric [80 h] | 757 | 3 | 4 | 2 | 3 | 3 | 5 | 4 | 0 | 4 |  |  |  |  |
| MWH06.C4.C3100 |  | Set Exterior Electrical OFCI Equipment - GEN | 5d | 2021-04-12 A | 2021-04-24 A | MWH06.C4.C3060, MWH06.C4.E1180, MWH06.C4.E1190 | 100% |  | 2021-04-26 | 2021-05-03 |  |  |  | VECA Electric [200 h] | 1641 | 4 | 4 | 2 | 3 | 3 | 5 | 4 | 0 | 4 |  |  |  |  |
| MWH06.C4.C3210 |  | Lift & Set MER in Place | 5d | 2021-04-30 A | 2021-05-03 A | MWH06.C4.E1380, MWH06.C4.E1220, MWH06.C4.C3060, MWH06-10531, MWH06-10530 | 100% |  | 2021-06-01 | 2021-06-05 |  |  |  | VECA Electric [120 h] | 1643 | 4 | 4 | 2 | 3 | 3 | 5 | 4 | 0 | 4 |  | 4 | 4 |  |
| MWH06.C4.C3260 |  | Steel Support for OH Conductors & Cable Tray Installation | 4d | 2021-05-03 A | 2021-05-06 A | MWH06.C4.C3060, MWH06.C4.C3210, MWH06.C4.C1280, MWH06-10530 | 100% |  | 2021-06-07 | 2021-06-10 |  |  |  | Steel [160 h] | 1642 | 3 | 4 | 2 | 3 | 3 | 5 | 2 |  | 3 |  |  |  |  |
| MWH06.C4.C3270 |  | Assemble MER & Complete Shipping Split (SE) | 10d | 2021-05-03 A | 2021-05-18 A | MWH06.C4.C3210, MWH06-10530 | 100% |  | 2021-06-07 | 2021-06-18 |  |  |  |  | 1649 | 2 | 4 | 2 | 3 | 3 | 5 | 4 |  |  |  | 4 | 4 |  |
| MWH06.C4.C3320 |  | GEN & UPM to MER Cable Bus Instal | 10d | 2021-07-10 A | 2021-07-16 A | MWH06-10580, MWH06-10574, MWH06.C4.C3270, MWH06.C4.C3260, MWH06-9945, MWH06.C4.C3100, MWH06-10316, MWH06-10531, MWH06-10530, MWH06.C4.C1320, MWH06-10572 | 100% |  | 2021-06-30 | 2021-07-13 |  |  |  | VECA Electric [560 h] | 1645 | 2 | 4 | 2 | 3 | 3 | 5 | 4 | 0 | 4 |  |  | 4 |  |
| MWH06-10353 |  | Generator & Utility Power Pull | 4d | 2021-07-19 A | 2021-07-22 A | MWH06-10580, MWH06-10564, MWH06-10574, MWH06-10426, MWH06.C4.C3260, MWH06.C4.C3100, MWH06.C4.C1380, MWH06.D6.C4.C3140, MWH06.C4.C3320, MWH06-10531, MWH06-10530, MWH06-10572 | 100% |  | 2021-07-31 | 2021-08-04 |  |  |  | VECA Electric | 1644 | 2 | 4 | 2 | 3 | 3 | 6 | 11 | 0 | 4 |  |  | 4 | 1 |
| MWH06.C4.C3380 |  | Generator & Utility Power Test-Term | 1d | 2021-07-28 A | 2021-08-07 A | MWH06-10580, MWH06-10574, MWH06.C4.C3320, MWH06.C4.C3100, MWH06.C4.C3260, MWH06.C4.C1380, MWH06.D6.C4.C3140, MWH06.C4.C1380 FF, MWH06-10353, MWH06-10531, MWH06-10530, MWH06-10565, MWH06-10572 | 100% |  | 2021-07-16 | 2021-07-16 |  |  |  | VECA Electric [640 h] | 1644 | 2 | 4 | 2 | 3 | 3 | 6 | 11 | 0 | 4 |  |  | 4 |  |
| MWH06.C4.C3390 |  | Electrical Feeders to Mechanical Equipment Pull-Test-Term | 20d | 2021-08-10 A | 2021-09-02 | MWH06-10578 FF+13d, MWH06.C4.C3270, MWH06.C4.C3110, MWH06.C4.C3100, MWH06.C4.C3260, MWH06.D6.C4.C3130, MWH06-9945, MWH06-9767 SS+8d, MWH06-10531, MWH06-10530, MWH06-10572, MWH06.C4.C3380 SS | 85% | 3d | 2021-08-31 | 2021-09-24 | -30d | 0d | 2021-09-02 | VECA Electric [1080 h] | 1646 | 2 | 4 | 2 | 3 | 3 | 6 | 11 | 0 | 4 |  |  | 4 |  |
|  | 2 | **Mechanical** |  | 2020-10-19 | 2021-05-10 |  |  |  |  |  |  |  |  |  |  |  |  |  |  |  |  |  |  |  |  |  |  |  |
| MWH06.C4.C3000 |  | Mechanical/Plumbing Underground Rough-In | 12d | 2020-10-19 A | 2020-10-23 A | MWH06.C4.C1000 | 100% |  | 2020-11-02 | 2020-11-16 |  |  |  | TCM Mechanical [720 h] | 1652 | 1 | 4 | 2 | 3 | 3 |  |  |  | 51 |  |  |  |  |
| MWH06.C4.C3070 |  | Exterior Equipment Pads - Mechanical | 12d | 2020-12-14 A | 2020-12-16 A | MWH06.C4.C3060 SS+6d, MWH06.C4.C3000 | 100% |  | 2021-01-09 | 2021-01-23 |  |  |  | OLSON [1200 h]; VECA Electric [240 h] | 1651 | 2 | 4 | 2 | 3 | 3 | 1 | 4 |  |  | CONC |  |  |  |
| MWH06.C4.C3080 |  | Steel Supports for Exterior Mechanical Equipment (Fluid Cooler Steel & Pipe Steel Supports) | 4d | 2021-02-01 A | 2021-02-05 A | MWH06.C4.C3070 | 100% |  | 2021-04-30 | 2021-05-05 |  |  |  | Steel [160 h] | 440 | 3 | 4 | 2 | 3 | 3 | 5 | 2 |  | 3 |  |  |  |  |
| MWH06.C4.C3110 |  | Set Exterior Mechanical OFCI Equipment (FC / WTE / Pumps) | 12d | 2021-04-01 A | 2021-04-14 A | MWH06.C4.C3080, MWH06.C4.E1240, MWH06.C4.E1250 | 100% |  | 2021-05-06 | 2021-05-19 |  |  |  | TCM Mechanical [720 h] | 1647 | 3 | 4 | 2 | 3 | 3 | 5 | 4 |  | 51 |  |  |  |  |
| MWH06.C4.C3111 |  | Set Exterior Water Treatment equipment | 2d | 2021-04-30 A | 2021-05-03 A | MWH06.D5.S1000, MWH06.D5.S1030, MWH06.C4.C3070, MWH06-10530 | 100% |  | 2021-06-30 | 2021-07-01 |  |  |  | TCM Mechanical [120 h] |  | 2 | 4 |  | 3 |  | 5 | 4 |  |  |  |  |  |  |
| MWH06.C4.C3135 |  | Set Gen Stack / Exhaust duct | 3d | 2021-04-30 A | 2021-05-05 A | MWH06.C4.C3100, MWH06-10530 | 100% |  | 2021-06-30 | 2021-07-02 |  |  |  | TCM Mechanical [60 h]; Steel [120 h] |  | 4 | 4 |  | 3 | 3 | 5 | 4 |  | 51 |  |  |  |  |
| MWH06.C4.C3120 |  | Mechanical Equipment Piping Connections | 6d | 2021-05-04 A | 2021-05-10 A | MWH06.C4.C3110 SS+5d, MWH06.C4.C3111, MWH06.C4.C3111 FF, MWH06-10530 | 100% |  | 2021-07-02 | 2021-07-10 |  |  |  | TCM Mechanical [720 h] | 1653 | 2 | 4 | 2 | 3 | 3 | 3 | 4 |  | 51 |  |  |  |  |

Notes:
- MWH06.C4.C3020: VECA Update Notes: Completed 1 day quicker than total duration (10 days instead of 11)
- MWH06-10353: VECA Update Notes: Incentive is on the start and finish of the last Cell in a COLO
- MWH06.C4.C3380: VECA Update Notes: Incentive is on the start and finish of the last Cell in a COLO

| ID | WBS | Activity | Duration | Start | Finish | Predecessors | Complete | Planned start | Planned finish | Resources | MSP Activity ID | HRA - Safety Level | COLO | MSFT-Funding Releases | CELL | WBS | HRA - Required Permit- Priority-1 | HRA - Required Permit- Priority-2 | VECA % Complete | TRADE | Discipline | MER | Critical Path mer to COLO | VECA- Changed |
| --- | --- | --- | --- | --- | --- | --- | --- | --- | --- | --- | --- | --- | --- | --- | --- | --- | --- | --- | --- | --- | --- | --- | --- | --- |
|  | 3 | **Plumbing** |  |  |  |  |  |  |  |  |  |  |  |  |  |  |  |  |  |  |  |  |  |  |
|  | 4 | **Special Systems** |  | 2021-08-17 | 2021-08-30 |  |  |  |  |  |  |  |  |  |  |  |  |  |  |  |  |  |  |  |
| MWH06.C4.C3370 |  | Fire Alarm Installation | 12d | 2021-08-17 A | 2021-08-30 A | MWH06.C4.C3110, MWH06.C4.C3100, MWH06.C4.C3390 SS+5d, MWH06-10531, MWH06-10530 | 100% | 2021-08-31 | 2021-09-15 | VECA Electric [240 h] | 1656 | 1 | 4 | 2 | 3 | 3 | 6 | 3 |  |  |  |  |  |  |
| MWH06.C4.C3410 |  | Controls Installation | 12d | 2021-08-17 A | 2021-08-30 A | MWH06.C4.C3100, MWH06.C4.C3110, MWH06.C4.C3370 SS, MWH06-10531, MWH06-10530 | 100% | 2021-08-31 | 2021-09-15 | VECA Electric [720 h] | 1657 | 1 | 4 | 2 | 3 | 3 | 6 | 3 | 0 | 4 |  |  |  |  |
|  | 3 | **Exterior Equipment Cell 2** |  | 2020-10-26 | 2021-09-09 |  |  |  |  |  |  |  |  |  |  |  |  |  |  |  |  |  |  |  |
|  | 1 | **Electrical** |  | 2020-10-26 | 2021-08-24 |  |  |  |  |  |  |  |  |  |  |  |  |  |  |  |  |  |  |  |
| MWH06.C4.C2020 |  | Electrical Underground Rough-In | 12d | 2020-10-26 A | 2020-11-07 A | MWH06.C3.C4000, MWH06.C4.CS1060 | 100% | 2020-11-02 | 2020-11-16 | VECA Electric [960 h] | 742 | 2 | 4 | 2 | 2 | 3 |  |  | 100 | 4 |  |  |  |  |
| MWH06.C4.C2030 |  | Exterior Equipment Pads - for UPM's | 4d | 2020-12-14 A | 2020-12-16 A | MWH06.C3.C4010, MWH06.C4.C2020 SS | 100% | 2021-01-02 | 2021-01-06 | OLSON [400 h]; VECA Electric [80 h] | 409 | 2 | 4 | 2 | 2 | 3 | 1 | 4 |  | 2 |  |  |  |  |
| MWH06.C4.C2060 |  | Exterior Equipment Pads - Electrical | 12d | 2020-12-14 A | 2020-12-16 A | MWH06.C3.C4050, MWH06.C4.C2020 | 100% | 2021-01-02 | 2021-01-15 | OLSON [1200 h]; VECA Electric [240 h] | 334 | 2 | 4 | 2 | 2 | 3 | 1 | 4 | 30.000000000000004 | 4 | CONC | 1 |  |  |
| MWH06.C4.C2040 |  | Set Electrical Equipment-UPM | 4d | 2021-01-04 A | 2021-01-04 A | MWH06.C4.C2030, MWH06.C4.E1020, MWH06.C4.E1030 | 100% | 2021-01-11 | 2021-01-14 | VECA Electric [80 h] | 759 | 3 | 4 | 2 | 2 | 3 | 5 | 4 |  | 4 |  |  |  |  |
| MWH06.C4.C2100 |  | Set Exterior Electrical OFCI Equipment - GEN | 5d | 2021-03-17 A | 2021-03-17 A | MWH06.C4.C2060, MWH06.C4.E1040, MWH06.C4.E1050 | 100% | 2021-03-31 | 2021-04-05 | VECA Electric [200 h] | 1660 | 4 | 4 | 2 | 2 | 3 | 5 | 4 | 0 | 4 |  |  |  |  |
| MWH06.C4.C2270 |  | Lift & Set MER in Place | 5d | 2021-05-03 A | 2021-05-04 A | MWH06.C4.E1370, MWH06.C4.E1130, MWH06.C4.C2060, MWH06.C4.C1230, MWH06-10531, MWH06-10530 | 100% | 2021-06-01 | 2021-06-05 | VECA Electric [120 h] | 1662 | 4 | 4 | 2 | 2 | 3 | 5 | 4 | 0 | 4 |  | 4 | 4 |  |
| MWH06.C4.C2280 |  | Steel Support for OH Conductors & Cable Tray Installation | 4d | 2021-05-03 A | 2021-05-06 A | MWH06.C4.C2060, MWH06.C4.C2270, MWH06-10530 | 100% | 2021-06-07 | 2021-06-10 | Steel [160 h] | 1661 | 3 | 4 | 2 | 2 | 3 | 5 | 2 |  | 3 |  |  |  |  |
| MWH06.C4.C2300 |  | Assemble MER & Complete Shipping Split (SE) | 10d | 2021-05-04 A | 2021-05-07 A | MWH06.C4.C2270, MWH06-10530 | 100% | 2021-06-07 | 2021-06-18 |  | 1668 | 2 | 4 | 2 | 2 | 3 | 5 | 4 |  |  |  | 4 | 4 |  |
| MWH06.C4.C2330 |  | GEN & UPM to MER Cable Bus Instal | 10d | 2021-07-15 A | 2021-07-27 A | MWH06.C4.C2300, MWH06.C4.C2280, MWH06-9944, MWH06.C4.C2100, MWH06-10317, MWH06-10531, MWH06-10530, MWH06-10572 | 100% | 2021-06-30 | 2021-07-13 | VECA Electric [560 h] | 1664 | 2 | 4 | 2 | 2 | 3 | 5 | 4 | 0 | 4 |  |  | 4 |  |
| MWH06-10354 |  | Generator & Utility Power Pull | 4d | 2021-07-29 A | 2021-08-05 A | MWH06-10580, MWH06-10574, MWH06-10425, MWH06.C4.C2280, MWH06.C4.C2100, MWH06.D6.C4.C2140, MWH06.C4.C2330, MWH06-10531, MWH06-10530, MWH06-10562, MWH06-10572 | 100% | 2021-07-31 | 2021-08-04 | VECA Electric [320 h] | 1663 | 2 | 4 | 2 | 2 | 3 | 6 | 11 | 0 | 4 |  |  | 4 | 1 |
| MWH06.C4.C2360 |  | Electrical Feeders to Mechanical Equipment Pull-Test-Term | 20d | 2021-07-31 A | 2021-08-24 A | MWH06-10577 FF+13d, MWH06.C4.C2300, MWH06.C4.C2110, MWH06.C4.C2100, MWH06.C4.C2280, MWH06.D6.C4.C2130, MWH06-9944, MWH06-9768 SS+8d, MWH06-10531, MWH06-10530 | 100% | 2021-08-31 | 2021-09-24 | VECA Electric [1080 h] | 1665 | 2 | 4 | 2 | 2 | 3 | 6 | 11 | 0 | 4 |  |  | 4 |  |
| MWH06.C4.C2380 |  | Generator & Utility Power Test-Term | 8d | 2021-08-06 A | 2021-08-16 A | MWH06-10580, MWH06-10574, MWH06.C4.C2330, MWH06.C4.C2100, MWH06.C4.C2280, MWH06.D6.C4.C2140, MWH06-10354, MWH06-10531, MWH06-10530, MWH06-10563 | 100% | 2021-09-03 | 2021-09-14 | VECA Electric [640 h] | 1663 | 2 | 4 | 2 | 2 | 3 | 6 | 11 | 0 | 4 |  |  | 4 |  |
|  | 2 | **Mechanical** |  | 2020-10-26 | 2021-05-10 |  |  |  |  |  |  |  |  |  |  |  |  |  |  |  |  |  |  |  |
| MWH06.C4.C2000 |  | Mechanical/Plumbing Underground Rough-In | 12d | 2020-10-26 A | 2020-11-07 A | MWH06.C4.C3000 FF | 100% | 2020-11-09 | 2020-11-23 | TCM Mechanical [720 h] | 1671 | 1 | 4 | 2 | 2 | 3 |  |  |  | 51 |  |  |  |  |
| MWH06.C4.C2070 |  | Exterior Equipment Pads - Mechanical | 12d | 2020-12-14 A | 2020-12-16 A | MWH06.C4.C2060 SS+6d, MWH06.C4.C2000 | 100% | 2021-01-02 | 2021-01-15 | OLSON [1200 h]; VECA Electric [240 h] | 1670 | 2 | 4 | 2 | 2 | 3 | 1 | 4 |  |  | CONC |  |  |  |
| MWH06.C4.C2080 |  | Steel Supports for Exterior Mechanical Equipment (Fluid Cooler Steel & Pipe Steel Supports) | 4d | 2021-02-01 A | 2021-02-05 A | MWH06.C4.C2070 | 100% | 2021-04-30 | 2021-05-05 | Steel [160 h] | 442 | 3 | 4 | 2 | 2 | 3 | 5 | 2 |  | 3 |  |  |  |  |
| MWH06.C4.C2135 |  | Set Gen Stack / Exhaust duct | 3d | 2021-03-31 A | 2021-04-02 A | MWH06.C4.C2100, MWH06-10530 | 100% | 2021-06-30 | 2021-07-02 | TCM Mechanical [60 h]; Steel [120 h] |  | 4 | 4 |  | 2 | 3 | 5 | 4 |  | 51 |  |  |  |  |
| MWH06.C4.C2110 |  | Set Exterior Mechanical OFCI Equipment (FC / WTE / Pumps) | 12d | 2021-04-12 A | 2021-04-21 A | MWH06.C4.C2080, MWH06.C4.E1160, MWH06.C4.E1170 | 100% | 2021-05-06 | 2021-05-19 | TCM Mechanical [720 h] | 1666 | 3 | 4 | 2 | 2 | 3 | 5 | 4 |  | 51 |  |  |  |  |
| MWH06.C4.C2111 |  | Set Exterior Water Treatment equipment | 2d | 2021-04-30 A | 2021-05-03 A | MWH06.D5.S1000, MWH06.D5.S1030, MWH06.C4.C2070, MWH06-10530 | 100% | 2021-06-30 | 2021-07-01 | TCM Mechanical [120 h] |  | 2 | 4 |  | 2 |  | 5 | 4 |  |  |  |  |  |  |
| MWH06.C4.C2120 |  | Mechanical Equipment Piping Connections | 6d | 2021-05-04 A | 2021-05-10 A | MWH06.C4.C2110 SS+5d, MWH06.C4.C2111, MWH06.C4.C2111 FF, MWH06-10530 | 100% | 2021-07-02 | 2021-07-10 | TCM Mechanical [720 h] | 1672 | 2 | 4 | 2 | 2 | 3 | 3 | 4 |  | 51 |  |  |  |  |

Notes:
- MWH06.C4.C2020: VECA Update Notes: Completed but duration was suspend and resume to backfill other areas
- MWH06.C4.C2060: VECA Update Notes: Our rough in complete to pad, pads not formed no rebar, so we are unable to complete grounding
- MWH06-10354: VECA Update Notes: Incentive is on the start and finish of the last Cell in a COLO
- MWH06.C4.C2380: VECA Update Notes: Incentive is on the start and finish of the last Cell in a COLO

| ID | WBS | Activity | Duration | Start | Finish | Predecessors | Complete | Remaining | Planned start | Planned finish | Total float | Free float | Resources | MSP Activity ID | HRA - Safety Level | COLO | MSFT-Funding Releases | CELL | WBS | HRA - Required Permit- Priority-1 | HRA - Required Permit- Priority-2 | VECA % Complete | TRADE | Discipline | MER | Critical Path mer to COLO | VECA- Changed |
| --- | --- | --- | --- | --- | --- | --- | --- | --- | --- | --- | --- | --- | --- | --- | --- | --- | --- | --- | --- | --- | --- | --- | --- | --- | --- | --- | --- |
|  | 3 | **Plumbing** |  |  |  |  |  |  |  |  |  |  |  |  |  |  |  |  |  |  |  |  |  |  |  |  |  |
|  | 4 | **Special Systems** |  | 2021-07-31 | 2021-09-09 |  |  |  |  |  |  |  |  |  |  |  |  |  |  |  |  |  |  |  |  |  |  |
| MWH06.C4.C2400 |  | Fire Alarm Installation | 12d | 2021-07-31 A | 2021-08-13 A | MWH06.C4.C2110, MWH06.C4.C2100, MWH06.C4.C2360 SS, MWH06-10531, MWH06-10530 | 100% |  | 2021-08-31 | 2021-09-15 |  |  | VECA Electric [240 h] | 1675 | 1 | 4 | 2 | 2 | 3 | 6 | 3 |  |  |  |  |  |  |
| MWH06.C4.C2430 |  | Controls Installation | 12d | 2021-08-26 A | 2021-09-09 | MWH06.C4.C2100, MWH06.C4.C2110, MWH06.C4.C2400 SS, MWH06.D6.C4.C2150, MWH06-10531, MWH06-10530 | 42% | 7d | 2021-09-01 | 2021-09-16 | 73d | 121d | VECA Electric [720 h] | 1676 | 1 | 4 | 2 | 2 | 3 | 6 | 3 | 0 | 4 |  |  |  |  |
|  | 4 | **Exterior Equipment Cell 4** |  | 2020-10-26 | 2021-08-24 |  |  |  |  |  |  |  |  |  |  |  |  |  |  |  |  |  |  |  |  |  |  |
|  | 1 | **Electrical** |  | 2020-10-26 | 2021-08-24 |  |  |  |  |  |  |  |  |  |  |  |  |  |  |  |  |  |  |  |  |  |  |
| MWH06.C4.C4020 |  | Electrical Underground Rough-In | 12d | 2020-10-26 A | 2020-11-07 A | MWH06.C4.C2020 FF | 100% |  | 2020-11-07 | 2020-11-21 |  |  | VECA Electric [960 h] | 1679 | 2 | 4 | 2 | 4 | 3 |  |  | 100 | 4 |  |  |  |  |
| MWH06.C4.C4030 |  | Exterior Equipment Pads - for UPM's | 4d | 2020-12-14 A | 2020-12-16 A | MWH06.C4.C2030, MWH06.C4.C4020 SS | 100% |  | 2021-01-07 | 2021-01-11 |  |  | OLSON [160 h]; VECA Electric [320 h] | 411 | 2 | 4 | 2 | 4 | 3 | 1 | 4 |  | 2 |  |  |  |  |
| MWH06.C4.C4060 |  | Exterior Equipment Pads - Electrical | 12d | 2020-12-14 A | 2020-12-16 A | MWH06.C4.C2060, MWH06.C4.C4020 | 100% |  | 2021-01-18 | 2021-01-30 |  |  | OLSON [1200 h]; VECA Electric [240 h] | 336 | 2 | 4 | 2 | 4 | 3 | 1 | 4 | 30 | 4 | CONC | 1 |  |  |
| MWH06.C4.C4040 |  | Set Electrical Equipment-UPM | 4d | 2021-01-04 A | 2021-01-07 A | MWH06.C4.C4030, MWH06.C4.E1100, MWH06.C4.E1110 | 100% |  | 2021-03-01 | 2021-03-04 |  |  | VECA Electric [80 h] | 758 | 3 | 4 | 2 | 4 | 3 | 5 | 4 | 0 | 4 |  |  |  |  |
| MWH06.C4.C4100 |  | Set Exterior Electrical OFCI Equipment - GEN | 5d | 2021-03-31 A | 2021-04-24 A | MWH06.C4.C4060, MWH06.C4.E1200, MWH06.C4.E1210 | 100% |  | 2021-03-31 | 2021-04-05 |  |  | VECA Electric [200 h] | 1680 | 4 | 4 | 2 | 4 | 3 | 5 | 4 | 0 | 4 |  |  |  |  |
| MWH06.C4.C4250 |  | Lift & Set MER in Place | 5d | 2021-05-10 A | 2021-05-10 A | MWH-06-04-ROJ-F, MWH06.C4.E1390, MWH06.C4.E1230, MWH06.C4.C4060, MWH06.C4.C3210, MWH06-10531, MWH06-10530 | 100% |  | 2021-06-01 | 2021-06-05 |  |  | VECA Electric [120 h] | 812 | 4 | 4 | 2 | 4 | 3 | 5 | 4 | 0 | 4 |  | 4 | 4 |  |
| MWH06.C4.C4260 |  | Steel Support for OH Conductors & Cable Tray Installation | 4d | 2021-05-10 A | 2021-05-14 A | MWH06.C4.C4060, MWH06.C4.C4250, MWH06.C4.C2280, MWH06-10367, MWH06-10530 | 100% |  | 2021-06-07 | 2021-06-10 |  |  | Steel [160 h] | 1681 | 3 | 4 | 2 | 4 | 3 | 5 | 2 |  | 3 |  |  |  |  |
| MWH06.C4.C4290 |  | Assemble MER & Complete Shipping Split (SE) | 10d | 2021-05-11 A | 2021-05-28 A | MWH06.C4.C4250, MWH06-10530 | 100% |  | 2021-06-07 | 2021-06-18 |  |  |  | 1687 | 2 | 4 | 2 | 4 | 3 | 5 | 4 |  |  |  | 4 | 4 |  |
| MWH06.C4.C4310 |  | GEN & UPM to MER Cable Bus Instal | 10d | 2021-07-16 A | 2021-07-27 A | MWH06.C4.C4290, MWH06.C4.C4260, MWH06-9946, MWH06.C4.C4100, MWH06-10318, MWH06-10367, MWH06-10531, MWH06-10530, MWH06-10572, MWH06-10572 FF | 100% |  | 2021-07-31 | 2021-08-11 |  |  | VECA Electric [560 h] | 1683 | 2 | 4 | 2 | 4 | 3 | 5 | 4 | 0 | 4 |  |  | 4 |  |
| MWH06-10355 |  | Generator & Utility Power Pull | 4d | 2021-07-29 A | 2021-08-05 A | MWH06-10580, MWH06-10574, MWH06-10427, MWH06.C4.C4260, MWH06.C4.C4100, MWH06.D6.C4.C4140, MWH06.C4.C4310, MWH06-10367, MWH06-10367 FF, MWH06-10429, MWH06-10531, MWH06-10530, MWH06-10566, MWH06-10572 | 100% |  | 2021-08-06 | 2021-08-10 |  |  | VECA Electric [320 h] | 1682 | 2 | 4 | 2 | 4 | 3 | 6 | 11 | 0 | 4 |  |  | 4 | 1 |
| MWH06.C4.C4390 |  | Electrical Feeders to Mechanical Equipment Pull-Test-Term | 20d | 2021-07-31 A | 2021-08-24 A | MWH06-10579 FF+13d, MWH06.C4.C4290, MWH06.C4.C4110, MWH06.C4.C4100, MWH06.C4.C4260, MWH06.D6.C4.C4130, MWH06-9946, MWH06-9769 SS+8d, MWH06-10531, MWH06-10530, MWH06-10572 | 100% |  | 2021-08-31 | 2021-09-24 |  |  | VECA Electric [1080 h] | 1684 | 2 | 4 | 2 | 4 | 3 | 6 | 11 | 0 | 4 |  |  | 4 |  |
| MWH06.C4.C4370 |  | Generator & Utility Power Test-Term | 8d | 2021-08-13 A | 2021-08-24 A | MWH06-10580, MWH06.C4.C3380, MWH06-10574, MWH06.C4.C4310, MWH06.C4.C4100, MWH06.C4.C4260, MWH06.D6.C4.C4140, MWH06.C4.C2380, MWH06-10355, MWH06-10367, MWH06-10429, MWH06-10531, MWH06-10530, MWH06-10567, MWH06-10572 | 100% |  | 2021-08-31 | 2021-09-10 |  |  | VECA Electric [640 h] | 1682 | 2 | 4 | 2 | 4 | 3 | 6 | 11 | 0 | 4 |  |  | 4 |  |
|  | 2 | **Mechanical** |  | 2020-10-26 | 2021-05-10 |  |  |  |  |  |  |  |  |  |  |  |  |  |  |  |  |  |  |  |  |  |  |
| MWH06.C4.C4000 |  | Mechanical/Plumbing Underground Rough-In | 12d | 2020-10-26 A | 2020-11-07 A | MWH06.C4.C2000 FF | 100% |  | 2020-11-24 | 2020-12-11 |  |  | TCM Mechanical [720 h] | 1690 | 1 | 4 | 2 | 4 | 3 |  |  |  | 51 |  |  |  |  |
| MWH06.C4.C4070 |  | Exterior Equipment Pads - Mechanical | 12d | 2020-12-14 A | 2020-12-16 A | MWH06.C4.C4060 SS+6d, MWH06.C4.C4000 | 100% |  | 2021-01-02 | 2021-01-15 |  |  | OLSON [1200 h]; VECA Electric [240 h] | 1689 | 2 | 4 | 2 | 4 | 3 | 1 | 4 |  |  | CONC |  |  |  |
| MWH06.C4.C4080 |  | Steel Supports for Exterior Mechanical Equipment (Fluid Cooler Steel & Pipe Steel Supports) | 4d | 2021-02-01 A | 2021-02-05 A | MWH06.C4.C4070 | 100% |  | 2021-04-30 | 2021-05-05 |  |  | Steel [160 h] | 444 | 3 | 4 | 2 | 4 | 3 | 5 | 2 |  | 3 |  |  |  |  |
| MWH06.C4.C4110 |  | Set Exterior Mechanical OFCI Equipment (FC / WTE / Pumps) | 12d | 2021-04-12 A | 2021-04-21 A | MWH06.C4.C4080, MWH06.C4.E1260, MWH06.C4.E1270 | 100% |  | 2021-05-06 | 2021-05-19 |  |  | TCM Mechanical [720 h] | 1685 | 3 | 4 | 2 | 4 | 3 | 5 | 4 |  | 51 |  |  |  |  |
| MWH06.C4.C4111 |  | Set Exterior Water Treatment equipment | 2d | 2021-04-30 A | 2021-05-03 A | MWH06.D5.S1000, MWH06.D5.S1030, MWH06.C4.C4070, MWH06-10530 | 100% |  | 2021-06-30 | 2021-07-01 |  |  | TCM Mechanical [120 h] |  | 2 | 4 |  | 4 |  | 5 | 4 |  |  |  |  |  |  |
| MWH06.C4.C4135 |  | Set Gen Stack / Exhaust duct | 3d | 2021-04-30 A | 2021-05-04 A | MWH06.C4.C4100, MWH06-10367, MWH06-10530 | 100% |  | 2021-06-30 | 2021-07-02 |  |  | TCM Mechanical [60 h]; Steel [120 h] |  | 4 | 4 |  | 4 | 3 | 5 | 4 |  | 51 |  |  |  |  |
| MWH06.C4.C4120 |  | Mechanical Equipment Piping Connections | 6d | 2021-05-04 A | 2021-05-10 A | MWH06.C4.C4110 SS+5d, MWH06.C4.C4111, MWH06.C4.C4111 FF, MWH06-10530 | 100% |  | 2021-07-02 | 2021-07-10 |  |  | TCM Mechanical [720 h] | 1691 | 2 | 4 | 2 | 4 | 3 | 3 | 4 |  | 51 |  |  |  |  |

Notes:
- MWH06.C4.C4020: VECA Update Notes: Completed but duration was suspend and resume to backfill other areas
- MWH06-10355: VECA Update Notes: Incentive is on the start and finish of the last Cell in a COLO
- MWH06.C4.C4370: VECA Update Notes: Incentive is on the start and finish of the last Cell in a COLO

| ID | WBS | Activity | Duration | Start | Finish | Predecessors | Complete | Planned start | Planned finish | Resources | MSP Activity ID | HRA - Safety Level | COLO | MSFT-Funding Releases | CELL | WBS | HRA - Required Permit- Priority-1 | HRA - Required Permit- Priority-2 | VECA % Complete | TRADE |
| --- | --- | --- | --- | --- | --- | --- | --- | --- | --- | --- | --- | --- | --- | --- | --- | --- | --- | --- | --- | --- |
|  | 3 | **Plumbing** |  |  |  |  |  |  |  |  |  |  |  |  |  |  |  |  |  |  |
|  | 4 | **Special Systems** |  | 2021-08-06 | 2021-08-20 |  |  |  |  |  |  |  |  |  |  |  |  |  |  |  |
| MWH06.C4.C4360 |  | Fire Alarm Installation | 12d | 2021-08-06 A | 2021-08-20 A | MWH06.C4.C4110, MWH06.C4.C4100, MWH06.C4.C4390 SS+5d, MWH06-10531, MWH06-10530 | 100% | 2021-08-31 | 2021-09-15 | VECA Electric [240 h] | 1694 | 1 | 4 | 2 | 4 | 3 | 6 | 3 |  |  |
| MWH06.C4.C4410 |  | Controls Installation | 12d | 2021-08-06 A | 2021-08-20 A | MWH06.C4.C4100, MWH06.C4.C4110, MWH06.C4.C4360 SS, MWH06-10531, MWH06-10530 | 100% | 2021-08-31 | 2021-09-15 | VECA Electric [720 h] | 1695 | 1 | 4 | 2 | 4 | 3 | 6 | 3 | 0 | 4 |
|  | 5 | **Mechanical Corridor Cell 1** |  | 2021-03-10 | 2021-08-13 |  |  |  |  |  |  |  |  |  |  |  |  |  |  |  |
|  | 1 | **Electrical** |  | 2021-04-30 | 2021-08-13 |  |  |  |  |  |  |  |  |  |  |  |  |  |  |  |
| MWH06.C4.C1160 |  | VFD'S Installation & Wiring | 12d | 2021-04-30 A | 2021-05-14 A | MWH06.C4.C1130, MWH06.C4.C1170, MWH06-10531, MWH06-10530 | 100% | 2021-06-30 | 2021-07-15 | VECA Electric [240 h] | 1698 | 1 | 4 | 2 | 1 | 4 | 3 | 4 | 0 | 4 |
| MWH06.C4.C1300 |  | Ligthing Installation | 12d | 2021-07-31 A | 2021-08-13 A | MWH06.C3.C3290, MWH06.C4.C1160, MWH06.C4.C1200, MWH06-10531, MWH06-10530 | 100% | 2021-08-31 | 2021-09-15 | VECA Electric [480 h] | 262 | 1 | 4 | 2 | 1 | 4 | 3 | 4 | 0 | 4 |
|  | 2 | **Mechanical** |  | 2021-03-10 | 2021-05-14 |  |  |  |  |  |  |  |  |  |  |  |  |  |  |  |
| MWH06.C4.C1170 |  | AHU/DOAS Equipment Setting | 5d | 2021-03-10 A | 2021-03-10 A | MWH06.C4.C1130, MWH06.C4.E1280, MWH06.C4.E1300 | 100% | 2021-05-15 | 2021-05-20 | TCM Mechanical [480 h] | 1700 | 3 | 4 | 2 | 1 | 4 |  |  |  | 51 |
| MWH06.C4.C1180 |  | Hydronic Piping Installation | 12d | 2021-04-30 A | 2021-05-14 A | MWH06.C4.C1170, MWH06-10530 | 100% | 2021-06-30 | 2021-07-15 | TCM Mechanical [480 h] | 1701 | 3 | 4 | 2 | 1 | 4 | 3 | 4 |  | 51 |
|  | 3 | **Plumbing** |  | 2021-04-30 | 2021-06-15 |  |  |  |  |  |  |  |  |  |  |  |  |  |  |  |
| MWH06.C4.C1240 |  | Floor Drain System Installation | 12d | 2021-04-30 A | 2021-05-14 A | MWH06.C4.C1010, MWH06.C4.C1200, MWH06.C4.C1170, MWH06-10530 | 100% | 2021-06-30 | 2021-07-15 |  | 271 | 1 | 4 | 2 | 1 | 4 | 6 | 3 |  |  |
| MWH06.C4.C1250 |  | Toilet Piping Installation / DW | 12d | 2021-06-01 A | 2021-06-15 A | MWH06.C4.C1200, MWH06-10530 | 100% | 2021-06-30 | 2021-07-15 | TCM Mechanical [480 h] | 273 | 1 | 4 | 2 | 1 | 4 | 4 | 11 |  | 51 |
|  | 4 | **Special Systems** |  | 2021-05-19 | 2021-08-09 |  |  |  |  |  |  |  |  |  |  |  |  |  |  |  |
| MWH06.C4.C1050 |  | Fire Riser Installation | 12d | 2021-05-19 A | 2021-06-03 A | MWH06.C4.C1010, MWH06.C4.C1170, MWH06-10530 | 100% | 2021-07-31 | 2021-08-13 |  | 1704 | 3 | 4 | 2 | 1 | 4 | 6 | 3 |  |  |
| MWH06.C4.C1090 |  | Fire Alarm System | 12d | 2021-07-01 A | 2021-07-16 A | MWH06.C4.C1050, MWH06.C4.C1160, MWH06-10531, MWH06-10530 | 100% | 2021-07-31 | 2021-08-13 | VECA Electric [240 h] | 250 | 1 | 4 | 2 | 1 | 4 | 6 | 3 |  |  |
| MWH06.C4.C1210 |  | Controls Installation | 18d | 2021-07-20 A | 2021-08-09 A | MWH06.C4.C3090, MWH06.C4.C1160, MWH06.C4.C1090, MWH06-10531, MWH06-10530 | 100% | 2021-07-31 | 2021-08-21 | VECA Electric [720 h] | 251 | 1 | 4 | 2 | 1 | 4 | 6 | 3 | 0 | 4 |
|  | 6 | **Mechanical Corridor Cell 3** |  | 2021-03-18 | 2021-08-28 |  |  |  |  |  |  |  |  |  |  |  |  |  |  |  |
|  | 1 | **Electrical** |  | 2021-06-01 | 2021-08-28 |  |  |  |  |  |  |  |  |  |  |  |  |  |  |  |
| MWH06.C4.C3160 |  | VFD'S Installation & Wiring | 12d | 2021-06-01 A | 2021-06-15 A | MWH06.C4.C3140, MWH06.C4.C3170, MWH06-10531, MWH06-10530 | 100% | 2021-06-30 | 2021-07-15 | VECA Electric [240 h] | 1707 | 1 | 4 | 2 | 3 | 4 | 3 | 4 | 0 | 4 |
| MWH06.C4.C3280 |  | Ligthing Installation | 12d | 2021-08-16 A | 2021-08-28 A | MWH06.C4.C1300, MWH06.C4.C3160, MWH06.C4.C3240, MWH06-10531, MWH06-10530 | 100% | 2021-09-16 | 2021-09-30 | VECA Electric [480 h] | 260 | 1 | 4 | 2 | 3 | 4 | 3 | 4 | 0 | 4 |
|  | 2 | **Mechanical** |  | 2021-03-18 | 2021-05-14 |  |  |  |  |  |  |  |  |  |  |  |  |  |  |  |
| MWH06.C4.C3170 |  | AHU/DOAS Equipment Setting | 5d | 2021-03-18 A | 2021-03-18 A | MWH06.C4.C3140, MWH06.C4.E1320, MWH06.C4.E1340 | 100% | 2021-06-01 | 2021-06-05 | TCM Mechanical [480 h] | 1709 | 3 | 4 | 2 | 3 | 4 |  |  |  | 51 |
| MWH06.C4.C3200 |  | Hydronic Piping Installation | 12d | 2021-04-30 A | 2021-05-14 A | MWH06.C4.C3170, MWH06-10530 | 100% | 2021-06-30 | 2021-07-15 | TCM Mechanical [480 h] | 1710 | 3 | 4 | 2 | 3 | 4 | 3 | 4 |  | 51 |

Notes:
- MWH06.C4.C1090: Notes: 8.10.20- MV equipment Delay- Changed logic to push it to non peak man power
- MWH06.C4.C1210: Notes: 8.17.20-DRB#2-Controls tied to Cell-3 Fire alarm sytem. to push to march(non peak).

| ID | WBS | Activity | Duration | Start | Finish | Predecessors | Complete | Planned start | Planned finish | Total float | Free float | Constraint | Resources | MSP Activity ID | HRA - Safety Level | COLO | MSFT-Funding Releases | CELL | WBS | HRA - Required Permit- Priority-1 | HRA - Required Permit- Priority-2 | TRADE | VECA % Complete |
| --- | --- | --- | --- | --- | --- | --- | --- | --- | --- | --- | --- | --- | --- | --- | --- | --- | --- | --- | --- | --- | --- | --- | --- |
|  | 3 | **Plumbing** |  | 2021-04-30 | 2021-05-14 |  |  |  |  |  |  |  |  |  |  |  |  |  |  |  |  |  |  |
| MWH06.C4.C3290 |  | Floor Drain System Installation | 12d | 2021-04-30 A | 2021-05-14 A | MWH06.C4.C3010, MWH06.C4.C3240, MWH06.C4.C3170, MWH06-10530 | 100% | 2021-06-30 | 2021-07-15 |  |  |  |  | 269 | 1 | 4 | 2 | 3 | 4 | 6 | 3 |  |  |
| MWH06.C4.C3300 |  | Toilet Piping Installation / DW | 12d | 2021-04-30 A | 2021-05-14 A | MWH06.C4.C3240, MWH06-10530 | 100% | 2021-06-30 | 2021-07-15 |  |  |  | TCM Mechanical [480 h] | 267 | 1 | 4 | 2 | 3 | 4 | 4 | 11 | 51 |  |
|  | 4 | **Special Systems** |  | 2021-05-15 | 2021-08-12 |  |  |  |  |  |  |  |  |  |  |  |  |  |  |  |  |  |  |
| MWH06.C4.C3090 |  | Fire Alarm System | 12d | 2021-05-15 A | 2021-05-29 A | MWH06.C4.C3160, MWH06.C4.C3170, MWH06-10531, MWH06-10530 | 100% | 2021-06-30 | 2021-07-15 |  |  |  | VECA Electric [240 h] | 1714 | 1 | 4 | 2 | 3 | 4 | 6 | 3 |  |  |
| MWH06.C4.C3250 |  | Controls Installation | 18d | 2021-07-20 A | 2021-08-12 A | MWH06.C4.C3160, MWH06.C4.C3090, MWH06.C4.C1210, MWH06-10531, MWH06-10530 | 100% | 2021-08-23 | 2021-09-14 |  |  |  | VECA Electric [720 h] | 1713 | 1 | 4 | 2 | 3 | 4 | 6 | 3 | 4 | 0 |
|  | 7 | **Mechanical Corridor Cell 2** |  | 2021-03-17 | 2021-08-28 |  |  |  |  |  |  |  |  |  |  |  |  |  |  |  |  |  |  |
|  | 1 | **Electrical** |  | 2021-07-27 | 2021-08-28 |  |  |  |  |  |  |  |  |  |  |  |  |  |  |  |  |  |  |
| MWH06.C4.C2160 |  | VFD'S Installation & Wiring | 12d | 2021-07-27 A | 2021-08-09 A | MWH06.C4.C2130, MWH06.C4.C2170, MWH06-10531, MWH06-10530 | 100% | 2021-07-31 | 2021-08-13 |  |  |  | VECA Electric [240 h] | 1718 | 1 | 4 | 2 | 2 | 4 | 3 | 4 | 4 | 0 |
| MWH06.C4.C2370 |  | Lighting Installation | 12d | 2021-08-16 A | 2021-08-28 A | MWH06.C3.C4400, MWH06.C4.C2160, MWH06.C4.C2200, MWH06-10531, MWH06-10530 | 100% | 2021-09-11 | 2021-09-24 |  |  |  | VECA Electric [480 h] | 270 | 1 | 4 | 2 | 2 | 4 | 3 | 4 | 4 | 0 |
|  | 2 | **Mechanical** |  | 2021-03-17 | 2021-06-15 |  |  |  |  |  |  |  |  |  |  |  |  |  |  |  |  |  |  |
| MWH06.C4.C2170 |  | AHU/DOAS Equipment Setting | 5d | 2021-03-17 A | 2021-03-17 A | MWH06.C4.C2130, MWH06.C4.E1290, MWH06.C4.E1310 | 100% | 2021-05-15 | 2021-05-20 |  |  |  | TCM Mechanical [480 h] | 1720 | 3 | 4 | 2 | 2 | 4 |  |  | 51 |  |
| MWH06.C4.C2180 |  | Hydronic Piping Installation | 12d | 2021-06-01 A | 2021-06-15 A | MWH06.C4.C2170, MWH06-10530 | 100% | 2021-06-30 | 2021-07-15 |  |  |  | TCM Mechanical [480 h] | 1721 | 3 | 4 | 2 | 2 | 4 | 3 | 4 | 51 |  |
|  | 3 | **Plumbing** |  | 2021-06-01 | 2021-08-13 |  |  |  |  |  |  |  |  |  |  |  |  |  |  |  |  |  |  |
| MWH06.C4.C2240 |  | Toilet Piping Installation / DW | 12d | 2021-06-01 A | 2021-06-15 A | MWH06.C4.C2200, MWH06-10530 | 100% | 2021-06-30 | 2021-07-15 |  |  |  | TCM Mechanical [480 h] | 259 | 1 | 4 | 2 | 2 | 4 | 4 | 11 | 51 |  |
| MWH06.C4.C2230 |  | Floor Drain System Installation | 12d | 2021-07-31 A | 2021-08-13 A | MWH06.C4.C2010, MWH06.C4.C2200, MWH06.C4.C2170, MWH06-10530 | 100% | 2021-08-31 | 2021-09-15 |  |  |  |  | 265 | 1 | 4 | 2 | 2 | 4 | 6 | 3 |  |  |
|  | 4 | **Special Systems** |  | 2021-07-01 | 2021-08-17 |  |  |  |  |  |  |  |  |  |  |  |  |  |  |  |  |  |  |
| MWH06.C4.C2090 |  | Fire Alarm System | 12d | 2021-07-01 A | 2021-07-16 A | MWH06-10531, MWH06-10530 | 100% | 2021-07-31 | 2021-08-13 |  |  |  | VECA Electric [240 h] | 1725 | 1 | 4 | 2 | 2 | 4 | 6 | 3 |  |  |
| MWH06.C4.C2210 |  | Controls Installation | 18d | 2021-07-27 A | 2021-08-17 A | MWH06.C4.C2090, MWH06-10531, MWH06-10530 | 100% | 2021-08-16 | 2021-09-07 |  |  | start on or after 2021-04-26 | VECA Electric [720 h] | 1724 | 1 | 4 | 2 | 2 | 4 | 6 | 3 | 4 | 0 |
|  | 8 | **Mechanical Corridor Cell 4** |  | 2021-03-20 | 2021-09-15 |  |  |  |  |  |  |  |  |  |  |  |  |  |  |  |  |  |  |
|  | 1 | **Electrical** |  | 2021-07-31 | 2021-09-15 |  |  |  |  |  |  |  |  |  |  |  |  |  |  |  |  |  |  |
| MWH06.C4.C4160 |  | VFD'S Installation & Wiring | 12d | 2021-07-31 A | 2021-08-13 A | MWH06.C4.C4140, MWH06.C4.C4170, MWH06-10531, MWH06-10530 | 100% | 2021-08-31 | 2021-09-15 |  |  |  | VECA Electric [240 h] | 1729 | 1 | 4 | 2 | 4 | 4 | 3 | 4 | 4 | 0 |
| MWH06.C4.C4380 |  | Ligthing Installation | 12d | 2021-08-31 | 2021-09-15 | MWH06.C4.C2370, MWH06.C4.C4160, MWH06.C4.C4230, MWH06-10531, MWH06-10530 |  |  |  | 80d | 18d |  | VECA Electric [480 h] | 268 | 1 | 4 | 2 | 4 | 4 | 3 | 4 | 4 | 0 |
|  | 2 | **Mechanical** |  | 2021-03-20 | 2021-06-15 |  |  |  |  |  |  |  |  |  |  |  |  |  |  |  |  |  |  |
| MWH06.C4.C4170 |  | AHU/DOAS Equipment Setting | 5d | 2021-03-20 A | 2021-03-20 A | MWH06.C4.C4140, MWH06.C4.E1330, MWH06.C4.E1350 | 100% | 2021-06-01 | 2021-06-05 |  |  |  | TCM Mechanical [480 h] | 1731 | 3 | 4 | 2 | 4 | 4 |  |  | 51 |  |
| MWH06.C4.C4200 |  | Hydronic Piping Installation | 12d | 2021-06-01 A | 2021-06-15 A | MWH06.C4.C4170, MWH06-10530 | 100% | 2021-06-30 | 2021-07-15 |  |  |  | TCM Mechanical [480 h] | 1732 | 3 | 4 | 2 | 4 | 4 | 3 | 4 | 51 |  |

Notes:
- MWH06.C4.C3090: Notes: 8.10.20- MV equipment Delay- Changed logic to push it to non peak man power
- MWH06.C4.C2090: Notes: 8.10.20- MV equipment Delay- Changed logic to push it to non peak man power

| ID | WBS | Activity | Duration | Start | Finish | Predecessors | Complete | Remaining | Planned start | Planned finish | Total float | Free float | Expected finish | Resources | MSP Activity ID | HRA - Safety Level | COLO | TRADE | MSFT-Funding Releases | CELL | WBS | HRA - Required Permit- Priority-1 | HRA - Required Permit- Priority-2 | VECA % Complete | MWH06- TRADES | VECA- Changed | Critical Path mer to COLO |
| --- | --- | --- | --- | --- | --- | --- | --- | --- | --- | --- | --- | --- | --- | --- | --- | --- | --- | --- | --- | --- | --- | --- | --- | --- | --- | --- | --- |
|  | 3 | **Plumbing** |  | 2021-06-01 | 2021-08-13 |  |  |  |  |  |  |  |  |  |  |  |  |  |  |  |  |  |  |  |  |  |  |
| MWH06.C4.C4330 |  | Toilet Piping Installation / DW | 12d | 2021-06-01 A | 2021-06-15 A | MWH06.C4.C4270, MWH06.C4.C4230, MWH06-10530 | 100% |  |  |  |  |  |  | TCM Mechanical [480 h] | 266 | 1 | 4 | 51 | 2 | 4 | 4 | 4 | 11 |  |  |  |  |
| MWH06.C4.C4270 |  | Floor Drain System Installation | 12d | 2021-07-31 A | 2021-08-13 A | MWH06.C4.C4010, MWH06.C4.C4230, MWH06.C4.C4170, MWH06-10530 | 100% |  | 2021-08-31 | 2021-09-15 |  |  |  |  | 272 | 1 | 4 |  | 2 | 4 | 4 | 6 | 3 |  |  |  |  |
|  | 4 | **Special Systems** |  | 2021-07-27 | 2021-08-31 |  |  |  |  |  |  |  |  |  |  |  |  |  |  |  |  |  |  |  |  |  |  |
| MWH06.C4.C4240 |  | Controls Installation | 18d | 2021-07-27 A | 2021-08-31 A | MWH06.C4.C4090, MWH06.C4.C2210, MWH06-10531, MWH06-10530 | 100% |  | 2021-09-08 | 2021-09-29 |  |  |  | VECA Electric [720 h] | 1735 | 1 | 4 | 4 | 2 | 4 | 4 | 6 | 3 | 0 |  |  |  |
| MWH06.C4.C4090 |  | Fire Alarm System | 12d | 2021-07-31 A | 2021-08-13 A | MWH06.C4.C2090, MWH06-10531, MWH06-10530 | 100% |  | 2021-08-31 | 2021-09-15 |  |  |  | VECA Electric [240 h] | 1736 | 1 | 4 |  | 2 | 4 | 4 | 6 | 3 |  |  |  |  |
|  | 9 | **Data Hall Cell 1** |  | 2021-03-09 | 2021-10-20 |  |  |  |  |  |  |  |  |  |  |  |  |  |  |  |  |  |  |  |  |  |  |
|  | 1 | **Electrical** |  | 2021-03-09 | 2021-09-20 |  |  |  |  |  |  |  |  |  |  |  |  |  |  |  |  |  |  |  |  |  |  |
| MWH06.C4.C1270 |  | HAC Installation | 12d | 2021-03-09 A | 2021-03-26 A | MWH06.C4.C1220, MWH06.C4.C1260 | 100% |  | 2021-04-15 | 2021-04-28 |  |  |  | TCM Mechanical [480 h] | 1742 | 4 | 4 | 51 | 2 | 1 | 5 | 4 | 11 |  | 26 |  |  |
| MWH06.C4.C1310 |  | Cable Tray Installation | 12d | 2021-04-12 A | 2021-04-24 A | MWH06.C3.C3270, MWH06.C4.C1270 | 100% |  | 2021-05-04 | 2021-05-17 |  |  |  | VECA Electric [1440 h] | 1741 | 2 | 4 | 4 | 2 | 1 | 5 | 3 | 4 | 0 |  |  |  |
| MWH06.C4.C1350 |  | Power Bus Installation | 5d | 2021-05-07 A | 2021-05-15 A | MWH06.C4.C1310, MWH06.C3.C3310, MWH06-10531, MWH06-10530 | 100% |  | 2021-06-07 | 2021-06-11 |  |  |  | VECA Electric [1200 h] | 496 | 2 | 4 | 4 | 2 | 1 | 5 | 4 | 11 | 0 |  |  |  |
| MWH06-9783 |  | Below Ceiling Branch Conduit Rough-in | 6d | 2021-05-15 A | 2021-05-21 A | MWH06-9780, MWH06.C4.C1270, MWH06-10531, MWH06-10530 | 100% |  | 2021-07-09 | 2021-07-15 |  |  |  | VECA Electric [240 h] | 1576 | 1 | 4 | 4 | 2 | 1 | 1 | 3 | 4 |  |  |  |  |
| MWH06.C4.C1370 |  | PDU's Installation | 3d | 2021-06-01 A | 2021-06-03 A | MWH06.C4.C1350, MWH06.C4.E1400, MWH06.C4.E1410, MWH06-10531, MWH06-10530 | 100% |  |  |  |  |  |  | VECA Electric [180 h] | 1740 | 3 | 4 | 4 | 2 | 1 | 5 | 11 |  | 0 | 26 | 2 |  |
| MWH06.C4.C1450 |  | Light Fixtures Installation | 6d | 2021-07-27 A | 2021-08-21 A | MWH06.C4.C1430, MWH06.C4.C1370, MWH06-10531, MWH06-10530 | 100% |  | 2021-08-21 | 2021-08-27 |  |  |  | VECA Electric [480 h] | 264 | 2 | 4 | 4 | 2 | 1 | 5 | 3 | 4 | -3.7828998117805934E-2 |  | 1 |  |
| MWH06.C4.C1440 |  | Pull/term/Test PDU to Power bus | 20d | 2021-07-29 A | 2021-09-16 | MWH06-10401, MWH06.C4.C1370, MWH06.C4.C1350, MWH06-10531, MWH06-10530 | 35% | 13d | 2021-08-25 | 2021-09-18 | -11d | 0d | 2021-09-16 | VECA Electric [1440 h] | 1631 | 2 | 4 | 4 | 2 | 1 | 3 | 4 | 11 | 0 | 26 |  | 4 |
| MWH06.C4.C1420 |  | Pull / Term / Test Conductors ( MER to PDU) | 21d | 2021-08-25 A | 2021-09-20 | MWH06-10401, MWH06.C4.C1370 FF+8d, MWH06.D6.C4.C1120, MWH06.D6.C4.C1130, MWH06.C4.C1380, MWH06.D6.C4.C1120 FF, MWH06.C4.C1340 SS+7d, MWH06-9766 SS+8d, MWH06.D6.C4.C1160, MWH06-10531, MWH06-10530, MWH06-10572 | 24% | 16d | 2021-08-31 | 2021-09-27 | -32d | 0d | 2021-09-20 | VECA Electric [1680 h] | 1743 | 2 | 4 | 4 | 2 | 1 | 5 | 6 | 4 | 0 | 26 |  |  |
|  | 2 | **Fiber** |  | 2021-09-02 | 2021-10-20 |  |  |  |  |  |  |  |  |  |  |  |  |  |  |  |  |  |  |  |  |  |  |
| MWH06.C4.C1360 |  | EPMS Pull Wire / Term / Test | 12d | 2021-09-02 | 2021-09-17 | MWH06.C4.C1310, MWH06.C4.C1330 FF+6d, MWH06.D6.C4.C1130, MWH06.C4.C1420 SS+7d, MWH06-10530 |  |  |  |  | -12d | 0d |  | LINX [1440 h] | 1745 | 1 | 4 | 7 | 2 | 1 | 5 | 6 | 7 |  |  |  |  |
| MWH06.C4.C1400 |  | BMS Pull Wire / Term / Test | 12d | 2021-09-02 | 2021-09-17 | MWH06.C4.C1360 SS, MWH06-10530 |  |  |  |  | -12d | 6d |  | LINX [1440 h] | 1746 | 1 | 4 | 7 | 2 | 1 | 5 | 6 | 7 |  |  |  |  |
| MWH06.C4.C1460 |  | Install/Dress/Test Production Fiber (Includes MOR rack set & Fiber runner) | 20d | 2021-09-27 | 2021-10-20 | MWH06.C3.C3420, MWH06.C4.C1400, MWH06-10530 |  |  |  |  | 32.1d | 0d |  | LINX [1440 h] | 1747 | 1 | 4 | 7 | 2 | 1 | 5 |  | 4 |  |  |  |  |
|  | 3 | **Special Systems** |  | 2021-07-01 | 2021-08-13 |  |  |  |  |  |  |  |  |  |  |  |  |  |  |  |  |  |  |  |  |  |  |
| MWH06.C4.C1330 |  | Fire Alarm System | 10d | 2021-07-01 A | 2021-07-16 A | MWH06.C4.C1310, MWH06-10531, MWH06-10530 | 100% |  | 2021-07-31 | 2021-08-11 |  |  |  | VECA Electric [600 h] | 249 | 1 | 4 |  | 2 | 1 | 5 | 6 | 3 |  |  |  |  |
| MWH06.C4.C1430 |  | Controls Installation | 12d | 2021-07-20 A | 2021-08-13 A | MWH06.C4.C1310, MWH06.C4.C1330, MWH06-10531, MWH06-10530 | 100% |  | 2021-06-14 | 2021-06-26 |  |  |  | VECA Electric [720 h] | 248 | 1 | 4 | 4 | 2 | 1 | 5 | 6 | 3 | 0 |  | 1 |  |
|  | 10 | **Data Hall Cell 3** |  | 2021-03-09 | 2021-11-13 |  |  |  |  |  |  |  |  |  |  |  |  |  |  |  |  |  |  |  |  |  |  |
|  | 1 | **Electrical** |  | 2021-03-09 | 2021-10-07 |  |  |  |  |  |  |  |  |  |  |  |  |  |  |  |  |  |  |  |  |  |  |
| MWH06.C4.C3230 |  | HAC Installation | 12d | 2021-03-09 A | 2021-03-26 A | MWH06.C4.C3190, MWH06.C4.C3220 | 100% |  | 2021-04-29 | 2021-05-13 |  |  |  | TCM Mechanical [480 h] | 1753 | 4 | 4 | 51 | 2 | 3 | 5 | 4 | 11 |  | 26 |  |  |
| MWH06.C4.C3310 |  | Cable Tray Installation | 12d | 2021-04-21 A | 2021-05-04 A | MWH06.C4.C1310, MWH06.C4.C3230, MWH06-10531, MWH06-10530 | 100% |  | 2021-06-01 | 2021-06-15 |  |  |  | VECA Electric [1440 h] | 1752 | 2 | 4 | 4 | 2 | 3 | 5 | 3 | 4 | 0 |  |  |  |
| MWH06-9784 |  | Below Ceiling Branch Conduit Rough-in | 6d | 2021-05-24 A | 2021-05-29 A | MWH06-9783, MWH06.C4.C3230, MWH06-10531, MWH06-10530 | 100% |  | 2021-07-16 | 2021-07-22 |  |  |  | VECA Electric [240 h] | 1583 | 1 | 4 | 4 | 2 | 3 | 1 | 3 | 4 |  |  |  |  |
| MWH06.C4.C3340 |  | Power Bus Installation | 5d | 2021-06-01 A | 2021-06-23 A | MWH06.C4.C3310, MWH06.C4.C1350, MWH06-10531, MWH06-10530 | 100% |  | 2021-06-01 | 2021-06-05 |  |  |  | VECA Electric [1200 h] | 498 | 2 | 4 | 4 | 2 | 3 | 5 | 4 | 11 | 0 |  | 1 |  |
| MWH06.C4.C3360 |  | PDU's Installation | 3d | 2021-06-25 A | 2021-06-30 A | MWH06.C4.C3340, MWH06.C4.E1440, MWH06.C4.E1450, MWH06-10531, MWH06-10530 | 100% |  | 2021-06-07 | 2021-06-09 |  |  |  | VECA Electric [180 h] | 1751 | 3 | 4 | 4 | 2 | 3 | 5 | 11 |  | 0 | 26 | 1 |  |
| MWH06.C4.C3420 |  | Pull / Term / Test Conductors ( MER to PDU) | 21d | 2021-09-03 | 2021-09-30 | MWH06-10402, MWH06.C4.C3360 FF+8d, MWH06.D6.C4.C3120, MWH06.D6.C4.C3130, MWH06.C4.C3380, MWH06.D6.C4.C3120 FF, MWH06.C4.C3390 SS+7d, MWH06-9767 SS+8d, MWH06.D6.C4.C3160, MWH06-10531, MWH06-10530 |  |  |  |  | -30d | 0d |  | VECA Electric [1680 h] | 1754 | 2 | 4 | 4 | 2 | 3 | 5 | 6 | 4 | 0 | 26 |  |  |
| MWH06.C4.C3440 |  | Pull/term/Test PDU to Power bus | 20d | 2021-09-03 | 2021-09-29 | MWH06-10402, MWH06.C4.C3360, MWH06.C4.C3340, MWH06-10531, MWH06-10530 |  |  |  |  | -11d | 21d |  | VECA Electric [1440 h] | 1648 | 2 | 4 | 4 | 2 | 3 | 3 | 4 | 11 | 0 | 26 |  | 4 |
| MWH06.C4.C3450 |  | Light Fixtures Installation | 6d | 2021-10-01 | 2021-10-07 | MWH06.C4.C3420, MWH06.C4.C3430, MWH06.C4.C3360, MWH06-10531, MWH06-10530 |  |  |  |  | 62d | 0d |  | VECA Electric [480 h] | 261 | 2 | 4 | 4 | 2 | 3 | 5 | 3 | 4 | -3.7828998117805934E-2 |  |  |  |

Notes:
- MWH06.C4.C4240: Notes: 8.17.20-Controls tied to controls to push to april to level peak manpower
- MWH06.C4.C4090: Notes: 8.10.20- MV equipment Delay- Changed logic to push it to non peak man power

| ID | WBS | Activity | Duration | Start | Finish | Predecessors | Complete | Remaining | Planned start | Planned finish | Total float | Free float | Expected finish | Resources | MSP Activity ID | HRA - Safety Level | COLO | TRADE | MSFT-Funding Releases | CELL | WBS | HRA - Required Permit- Priority-1 | HRA - Required Permit- Priority-2 | VECA % Complete | MWH06- TRADES | VECA- Changed | Critical Path mer to COLO |
| --- | --- | --- | --- | --- | --- | --- | --- | --- | --- | --- | --- | --- | --- | --- | --- | --- | --- | --- | --- | --- | --- | --- | --- | --- | --- | --- | --- |
|  | 2 | **Fiber** |  | 2021-09-14 | 2021-11-13 |  |  |  |  |  |  |  |  |  |  |  |  |  |  |  |  |  |  |  |  |  |  |
| MWH06.C4.C3350 |  | EPMS Pull Wire / Term / Test | 12d | 2021-09-14 | 2021-09-28 | MWH06.C4.C3310, MWH06.D6.C4.C3130, MWH06.C4.C3420 SS+7d, MWH06-10530 |  |  |  |  | -10d | 0d |  | LINX [1440 h] | 1757 | 1 | 4 | 7 | 2 | 3 | 5 | 6 | 7 |  |  |  |  |
| MWH06.C4.C3400 |  | BMS Pull Wire / Term / Test | 12d | 2021-09-14 | 2021-09-28 | MWH06.C4.C3350 SS, MWH06-10530 |  |  |  |  | -10d | 18d |  | LINX [1440 h] | 1758 | 1 | 4 | 7 | 2 | 3 | 5 | 6 | 7 |  |  |  |  |
| MWH06.C4.C3460 |  | Install/Dress/Test Production Fiber (Includes MOR rack set & Fiber runner) | 20d | 2021-10-21 | 2021-11-13 | MWH06.C4.C1460, MWH06.C4.C3400, MWH06-10530 |  |  |  |  | 32.1d | 80.1d |  | LINX [1440 h] | 1759 | 1 | 4 | 7 | 2 | 3 | 5 |  | 4 |  |  |  |  |
|  | 3 | **Special Systems** |  | 2021-07-31 | 2021-08-26 |  |  |  |  |  |  |  |  |  |  |  |  |  |  |  |  |  |  |  |  |  |  |
| MWH06.C4.C3330 |  | Fire Alarm System | 10d | 2021-07-31 A | 2021-08-11 A | MWH06.C4.C3310, MWH06-10531, MWH06-10530 | 100% |  | 2021-08-31 | 2021-09-13 |  |  |  | VECA Electric [600 h] | 1761 | 1 | 4 |  | 2 | 3 | 5 | 6 | 3 |  |  |  |  |
| MWH06.C4.C3430 |  | Controls Installation | 12d | 2021-08-12 A | 2021-08-26 A | MWH06.C4.C3310, MWH06.C4.C3330, MWH06-10531, MWH06-10530 | 100% |  | 2021-09-14 | 2021-09-28 |  |  |  | VECA Electric [720 h] | 1755 | 1 | 4 | 4 | 2 | 3 | 5 | 6 | 3 | 0 |  |  |  |
|  | 11 | **Data Hall Cell 2** |  | 2021-03-09 | 2021-11-02 |  |  |  |  |  |  |  |  |  |  |  |  |  |  |  |  |  |  |  |  |  |  |
|  | 1 | **Electrical** |  | 2021-03-09 | 2021-09-28 |  |  |  |  |  |  |  |  |  |  |  |  |  |  |  |  |  |  |  |  |  |  |
| MWH06.C4.C2260 |  | HAC Installation | 12d | 2021-03-09 A | 2021-03-26 A | MWH06.C4.C2220, MWH06.C4.C4210 | 100% |  | 2021-04-29 | 2021-05-13 |  |  |  | TCM Mechanical [480 h] | 1766 | 4 | 4 | 51 | 2 | 2 | 5 | 4 | 11 |  | 26 |  |  |
| MWH06.C4.C2290 |  | Cable Tray Installation | 12d | 2021-04-12 A | 2021-04-24 A | MWH06.C3.C4310, MWH06.C4.C2260 | 100% |  | 2021-05-06 | 2021-05-19 |  |  |  | VECA Electric [1440 h] | 1765 | 2 | 4 | 4 | 2 | 2 | 5 | 3 | 4 | 0 |  |  |  |
| MWH06.C4.C2320 |  | Power Bus Installation | 5d | 2021-05-01 A | 2021-05-13 A | MWH06.C4.C2290, MWH06.C4.C2260, MWH06.C3.C4340, MWH06-10531, MWH06-10530 | 100% |  | 2021-06-14 | 2021-06-18 |  |  |  | VECA Electric [1200 h] | 500 | 2 | 4 | 4 | 2 | 2 | 5 | 4 | 11 | 0 |  |  |  |
| MWH06-9785 |  | Below Ceiling Branch Conduit Rough-in | 6d | 2021-05-15 A | 2021-05-21 A | MWH06-9782, MWH06.C4.C2260, MWH06-10531, MWH06-10530 | 100% |  | 2021-07-16 | 2021-07-22 |  |  |  | VECA Electric [240 h] | 1588 | 1 | 4 | 4 | 2 | 2 | 1 | 3 | 4 |  |  |  |  |
| MWH06.C4.C2350 |  | PDU's Installation | 3d | 2021-06-01 A | 2021-06-03 A | MWH06.C4.C2320, MWH06.C4.E1420, MWH06.C4.E1430, MWH06-10531, MWH06-10530 | 100% |  |  |  |  |  |  | VECA Electric [180 h] | 1764 | 3 | 4 | 4 | 2 | 2 | 5 | 11 |  | 0 | 26 | 2 |  |
| MWH06.C4.C2440 |  | Pull/term/Test PDU to Power bus | 19d | 2021-07-29 A | 2021-09-15 | MWH06-10404, MWH06.C4.C2350, MWH06.C4.C2320, MWH06-10531, MWH06-10530 | 37% | 12d | 2021-08-25 | 2021-09-17 | -10d | 0d | 2021-09-15 | VECA Electric [1440 h] | 1667 | 2 | 4 | 4 | 2 | 2 | 3 | 4 | 11 | 0 | 26 |  | 4 |
| MWH06.C4.C2410 |  | Pull / Term / Test Conductors ( MER to PDU) | 21d | 2021-08-25 A | 2021-09-20 | MWH06-10404, MWH06.C4.C2350 FF+8d, MWH06.D6.C4.C2120, MWH06.D6.C4.C2130, MWH06.C4.C2380, MWH06.C4.C2360 SS+7d, MWH06-9768 SS+8d, MWH06.D6.C4.C2160, MWH06-10531, MWH06-10530 | 24% | 16d | 2021-09-01 | 2021-09-28 | -32d | 0d | 2021-09-20 | VECA Electric [1680 h] | 1767 | 2 | 4 | 4 | 2 | 2 | 5 | 6 | 4 | 0 | 26 |  |  |
| MWH06.C4.C2450 |  | Light Fixtures Installation | 5.1d | 2021-08-30 A | 2021-09-28 | MWH06.C4.C2410, MWH06.C4.C2420, MWH06.C4.C2350, MWH06-10531, MWH06-10530 |  | 5.1d | 2021-08-30 | 2021-09-07 | 70.9d | 8.9d |  | VECA Electric [480 h] | 263 | 2 | 4 | 4 | 2 | 2 | 5 | 3 | 4 | -3.7828998117805934E-2 |  | 1 |  |
|  | 2 | **Fiber** |  | 2021-09-02 | 2021-11-02 |  |  |  |  |  |  |  |  |  |  |  |  |  |  |  |  |  |  |  |  |  |  |
| MWH06.C4.C2340 |  | EPMS Pull Wire / Term / Test | 12d | 2021-09-02 | 2021-09-17 | MWH06.C4.C2290, MWH06.D6.C4.C2130, MWH06.C4.C2410 SS+7d, MWH06-10530 |  |  |  |  | -12d | 0d |  | LINX [1440 h] | 1770 | 1 | 4 | 7 | 2 | 2 | 5 | 6 | 7 |  |  |  |  |
| MWH06.C4.C2390 |  | BMS Pull Wire / Term / Test | 12d | 2021-09-02 | 2021-09-17 | MWH06.C4.C2340 SS, MWH06-10530 |  |  |  |  | -12d | 17d |  | LINX [1440 h] | 1771 | 1 | 4 | 7 | 2 | 2 | 5 | 6 | 7 |  |  |  |  |
| MWH06.C4.C2460 |  | Install/Dress/Test Production Fiber (Includes MOR rack set & Fiber runner) | 20d | 2021-10-09 | 2021-11-02 | MWH06.C3.C4460, MWH06.C4.C2390, MWH06-10530 |  |  |  |  | 21.1d | 0d |  | LINX [1440 h] | 1772 | 1 | 4 | 7 | 2 | 2 | 5 |  | 4 |  |  |  |  |
|  | 3 | **Special Systems** |  | 2021-06-14 | 2021-08-26 |  |  |  |  |  |  |  |  |  |  |  |  |  |  |  |  |  |  |  |  |  |  |
| MWH06.C4.C2420 |  | Controls Installation | 12d | 2021-06-14 A | 2021-08-26 A | MWH06.C4.C2290, MWH06.C4.C2310, MWH06-10531, MWH06-10530 | 100% |  | 2021-06-14 | 2021-06-26 |  |  |  | VECA Electric [720 h] | 1768 | 1 | 4 | 4 | 2 | 2 | 5 | 6 | 3 | 0 |  | 1 |  |
| MWH06.C4.C2310 |  | Fire Alarm System | 10d | 2021-07-31 A | 2021-08-11 A | MWH06.C4.C2290, MWH06-10531, MWH06-10530 | 100% |  | 2021-08-31 | 2021-09-13 |  |  |  | VECA Electric [600 h] | 1774 | 1 | 4 |  | 2 | 2 | 5 | 6 | 3 |  |  |  |  |

| ID | WBS | Activity | Type | Duration | Start | Finish | Predecessors | Complete | Remaining | Planned start | Planned finish | Total float | Free float | Constraint | Expected finish | Resources | MSP Activity ID | HRA - Safety Level | COLO | TRADE | MSFT-Funding Releases | CELL | WBS | MWH06- TRADES | HRA - Required Permit- Priority-1 | HRA - Required Permit- Priority-2 | VECA % Complete | VECA- Changed | Critical Path mer to COLO | MV CREW | HOT ITEMS | Critical Path-2 |
| --- | --- | --- | --- | --- | --- | --- | --- | --- | --- | --- | --- | --- | --- | --- | --- | --- | --- | --- | --- | --- | --- | --- | --- | --- | --- | --- | --- | --- | --- | --- | --- | --- |
|  | 13 | **Data Hall Cell 4** |  |  | 2021-03-09 | 2021-11-30 |  |  |  |  |  |  |  |  |  |  |  |  |  |  |  |  |  |  |  |  |  |  |  |  |  |  |
|  | 1 | **Electrical** |  |  | 2021-03-09 | 2021-09-21 |  |  |  |  |  |  |  |  |  |  |  |  |  |  |  |  |  |  |  |  |  |  |  |  |  |  |
| MWH06.C4.C4220 |  | HAC Installation |  | 12d | 2021-03-09 A | 2021-03-26 A | MWH06.C4.C4190, MWH06.C4.C1200 | 100% |  | 2021-05-07 | 2021-05-20 |  |  |  |  | TCM Mechanical [480 h] | 1779 | 4 | 4 | 51 | 2 | 4 | 5 | 26 | 4 | 11 |  |  |  |  |  |  |
| MWH06.C4.C4280 |  | Cable Tray Installation |  | 12d | 2021-05-05 A | 2021-05-24 A | MWH06.C4.C4220, MWH06.C4.C2290, MWH06-10531, MWH06-10530 | 100% |  | 2021-06-01 | 2021-06-15 |  |  |  |  | VECA Electric [1440 h] | 1778 | 2 | 4 | 4 | 2 | 4 | 5 |  | 3 | 4 | 0 |  |  |  |  |  |
| MWH06-9786 |  | Below Ceiling Branch Conduit Rough-in |  | 6d | 2021-05-24 A | 2021-05-29 A | MWH06-9785, MWH06.C4.C4220, MWH06-10531, MWH06-10530 | 100% |  | 2021-07-23 | 2021-07-30 |  |  |  |  | VECA Electric [240 h] | 1595 | 1 | 4 | 4 | 2 | 4 | 1 |  | 3 | 4 |  |  |  |  |  |  |
| MWH06.C4.C4320 |  | Power Bus Installation |  | 5d | 2021-06-24 A | 2021-07-13 A | MWH06.C4.C4280, MWH06.C4.C2320, MWH06-10531, MWH06-10530 | 100% |  | 2021-07-31 | 2021-08-05 |  |  |  |  | VECA Electric [1200 h] | 502 | 2 | 4 | 4 | 2 | 4 | 5 |  | 4 | 11 | 0 |  |  |  |  |  |
| MWH06.C4.C4350 |  | PDU's Installation |  | 3d | 2021-07-14 A | 2021-07-16 A | MWH06.C4.C4320, MWH06.C4.C4210, MWH06.C4.E1460, MWH06.C4.E1470, MWH06-10531, MWH06-10530 | 100% |  | 2021-06-07 | 2021-06-09 |  |  |  |  | VECA Electric [180 h] | 1777 | 3 | 4 | 4 | 2 | 4 | 5 | 26 | 11 |  | 0 | 1 |  |  |  |  |
| MWH06.C4.C4450 |  | Light Fixtures Installation |  | 6d | 2021-08-24 A | 2021-08-31 A | MWH06.C4.C4430, MWH06.C4.C4350, MWH06-10531, MWH06-10530 | 100% |  | 2021-08-31 | 2021-09-08 |  |  |  |  | VECA Electric [480 h] | 274 | 2 | 4 | 4 | 2 | 4 | 5 |  | 3 | 4 | -3.7828998117805934E-2 |  |  |  |  |  |
| MWH06.C4.C4420 |  | Pull / Term / Test Conductors ( MER to PDU) |  | 21d | 2021-08-25 A | 2021-09-21 | MWH06-10403, MWH06.C4.C4350 FF+8d, MWH06.C4.C4280, MWH06.D6.C4.C4120, MWH06.D6.C4.C4130, MWH06.C4.C4370, MWH06.C4.C4390 SS+7d, MWH06-9769 SS+8d, MWH06.D6.C4.C4150, MWH06-10531, MWH06-10530 | 19% | 17d | 2021-09-01 | 2021-09-28 | -22d | 0d |  | 2021-09-21 | VECA Electric [1680 h] | 1780 | 2 | 4 | 4 | 2 | 4 | 5 | 26 | 6 | 4 | 0 |  |  |  |  |  |
| MWH06.C4.C4440 |  | Pull/term/Test PDU to Power bus |  | 18d | 2021-08-25 A | 2021-09-16 | MWH06-10403, MWH06.C4.C4350, MWH06.C4.C4320, MWH06-10531, MWH06-10530 | 28% | 13d | 2021-08-31 | 2021-09-22 | -1d | 0d |  | 2021-09-16 | VECA Electric [1440 h] | 1686 | 2 | 4 | 4 | 2 | 4 | 3 | 26 | 4 | 11 | 0 |  | 4 |  |  |  |
|  | 2 | **Fiber** |  |  | 2021-09-02 | 2021-11-30 |  |  |  |  |  |  |  |  |  |  |  |  |  |  |  |  |  |  |  |  |  |  |  |  |  |  |
| MWH06.C4.C4340 |  | EPMS Pull Wire / Term / Test |  | 12d | 2021-09-02 | 2021-09-17 | MWH06.C4.C4280, MWH06.D6.C4.C4130, MWH06.C4.C4420 SS+7d, MWH06-10530 |  |  |  |  | -2d | 0d |  |  | LINX [1440 h] | 1783 | 1 | 4 | 7 | 2 | 4 | 5 |  | 6 | 7 |  |  |  |  |  |  |
| MWH06.C4.C4400 |  | BMS Pull Wire / Term / Test |  | 12d | 2021-09-02 | 2021-09-17 | MWH06.C4.C4340 SS, MWH06-10530 |  |  |  |  | -2d | 30d |  |  | LINX [1440 h] | 1784 | 1 | 4 | 7 | 2 | 4 | 5 |  | 6 | 7 |  |  |  |  |  |  |
| MWH06.C4.C4460 |  | Install/Dress/Test Production Fiber (Includes MOR rack set & Fiber runner) |  | 20d | 2021-11-03 | 2021-11-30 | MWH06.C4.C2460, MWH06.C4.C4400, MWH06-10530 |  |  |  |  | 21.1d | 69.1d |  |  | LINX [1440 h] | 1785 | 1 | 4 | 7 | 2 | 4 | 5 |  |  | 4 |  |  |  |  |  |  |
|  | 3 | **Special Systems** |  |  | 2021-07-27 | 2021-08-24 |  |  |  |  |  |  |  |  |  |  |  |  |  |  |  |  |  |  |  |  |  |  |  |  |  |  |
| MWH06.C4.C4430 |  | Controls Installation |  | 12d | 2021-07-27 A | 2021-08-24 A | MWH06.C4.C4280, MWH06.C4.C4300, MWH06-10531, MWH06-10530 | 100% |  | 2021-06-28 | 2021-07-13 |  |  |  |  | VECA Electric [720 h] | 1781 | 1 | 4 | 4 | 2 | 4 | 5 |  | 6 | 3 | 0 | 1 |  |  |  |  |
| MWH06.C4.C4300 |  | Fire Alarm System |  | 10d | 2021-07-31 A | 2021-08-11 A | MWH06.C4.C4280, MWH06-10531, MWH06-10530 | 100% |  | 2021-08-31 | 2021-09-13 |  |  |  |  | VECA Electric [600 h] | 1787 | 1 | 4 |  | 2 | 4 | 5 |  | 6 | 3 |  |  |  |  |  |  |
|  | 2 | **Commissioning** |  |  | 2021-02-22 | 2022-04-13 |  |  |  |  |  |  |  |  |  |  |  |  |  |  |  |  |  |  |  |  |  |  |  |  |  |  |
|  | 5 | **Admin** |  |  | 2021-02-22 | 2021-07-29 |  |  |  |  |  |  |  |  |  |  |  |  |  |  |  |  |  |  |  |  |  |  |  |  |  |  |
|  | 1 | **Admin** |  |  | 2021-02-22 | 2021-07-29 |  |  |  |  |  |  |  |  |  |  |  |  |  |  |  |  |  |  |  |  |  |  |  |  |  |  |
| MWH06-10184 |  | Start of Vendor Lvl-2 | milestone | 0d | 2021-02-22 A | 2021-02-22 A | MWH06-1968 | 100% |  | 2021-03-01 | 2021-03-01 |  |  | start on or after 2021-02-08 |  |  | 14 | 1 | A |  | 1C | ADMIN | 6 |  | 6 | 11 |  |  |  |  |  |  |
| MWH06-10260 |  | Admin - NETA test validation Inpections- VECA-EPS-RTS Admin |  | 3d | 2021-03-11 A | 2021-03-12 A | MWH06-10266 | 100% |  | 2021-03-01 | 2021-03-03 |  |  |  |  | VECA Electric | 797 | 3 | A |  |  | ADMIN | 6 |  | 6 | 11 |  |  |  | 3-1 | 1 | 1 |
| MWH06.AD.Cx2000 |  | Electrical Equipment Yellow Tagging |  | 12d | 2021-04-28 A | 2021-05-14 A | MWH06-10488 FF, MWH06-2685, MWH06.D4.S1030, MWH06AD-1019, MWH06AD-1023 SS+5d, MWH06-P1050, MWH06-1967, MWH06.AD.A1135, MWH06-1968 FF, MWH06-1964, MWH06-10161, MWH06-10184, MWH06-10260, MWH06-10375, MWH06-10530 | 100% |  | 2021-04-26 | 2021-05-10 |  |  |  |  |  | 14 | 1 | A |  | 1C | ADMIN | 6 |  | 6 | 11 |  |  |  |  |  |  |
| MWH06.AD.Cx2010 |  | Admin/Colo-1 Network Startup |  | 6d | 2021-04-30 A | 2021-05-07 A | MWH06.AD.Cx2000 SS, MWH06-10530 | 100% |  | 2021-05-17 | 2021-05-24 |  |  |  |  | LINX [720 h] | 1791 | 1 | A | 7 | 1C | ADMIN | 6 | 27 | 6 | 11 |  |  |  |  |  |  |
| MWH06-10033 |  | Control Power Available |  | 10d | 2021-04-30 A | 2021-05-28 A | MWH06.AD.Cx2000 SS+2d, MWH06-10530 | 100% |  | 2021-04-30 | 2021-05-12 |  |  |  |  | LINX | 5 | 1 | A | 7 | 1C | ADMIN | 6 |  | 6 | 11 |  |  |  |  |  |  |
| A1180 |  | ATS Equipment Yellow Tagging (S2 from MER) |  | 5d | 2021-05-12 A | 2021-05-24 A | MWH06-10490, MWH06-10489 | 100% |  | 2021-05-17 | 2021-05-21 |  |  |  |  |  | 14 | 1 | A |  | 1C | ADMIN | 6 |  | 6 | 11 |  |  |  |  |  |  |
| MWH06-10034 |  | Power available for Start up |  | 4d | 2021-06-30 A | 2021-07-06 A | MWH-06-01-POW-F, MWH06-10037, MWH-06-01-UPW-F, A1180, MWH06-10161, MWH06-10033, MWH06-10530 | 100% |  |  |  |  |  |  |  | LINX | 5 | 1 | A | 7 | 1C | ADMIN | 6 |  | 6 | 11 |  |  |  |  |  |  |
| MWH06.AD.Cx2020 |  | EPMS Checkout / Point to Point |  | 10d | 2021-06-30 A | 2021-07-13 A | MWH06.C1.Cx2020, MWH06.AD.Cx2010, MWH06-10033, MWH06-10530 | 100% |  |  |  |  |  |  |  | LINX [1200 h] | 5 | 1 | A | 7 | 1C | ADMIN | 6 |  | 6 | 11 |  |  |  |  |  |  |
| MWH06-10035 |  | OFCI Lvl 3 Testing & Start up (Electrical Equipment) |  | 16d | 2021-07-10 A | 2021-07-29 A | MWH06-10043, MWH06-10041, MWH06-10039, MWH06-10030, MWH06-10487, MWH06-10034, MWH06-10530 | 100% |  |  |  |  |  |  |  | LINX [1200 h] | 5 | 1 | A | 7 | 1C | ADMIN | 6 |  | 6 | 11 |  |  |  |  |  |  |
| MWH06-10036 |  | OFCI Lvl 3 Testing & Start up (Mechanical Equipment) |  | 12d | 2021-07-10 A | 2021-07-26 A | MWH06-10043, MWH06-10041, MWH06-10039, MWH06-10030, MWH06-1976, MWH06-10480, MWH06-10034, MWH06-10530 | 100% |  | 2021-07-10 | 2021-07-23 |  |  |  |  | LINX [1200 h] | 5 | 1 | A | 7 | 1C | ADMIN | 6 |  | 6 | 11 |  |  |  |  |  |  |

| ID | WBS | Activity | Duration | Start | Finish | Predecessors | Complete | Planned start | Planned finish | Resources | MSP Activity ID | HRA - Safety Level | MV CREW | COLO | HOT ITEMS | CELL | Critical Path-2 | WBS | HRA - Required Permit- Priority-1 | HRA - Required Permit- Priority-2 | SE activities | TRADE | MSFT-Funding Releases | MWH06- TRADES | CRITICAL PATH-3 | PHASE | VECA % Complete | VECA- Changed | Critical Path mer to COLO | Critical Path |
| --- | --- | --- | --- | --- | --- | --- | --- | --- | --- | --- | --- | --- | --- | --- | --- | --- | --- | --- | --- | --- | --- | --- | --- | --- | --- | --- | --- | --- | --- | --- |
|  | 3 | **COLO-1 Cx** |  | 2021-03-15 | 2021-11-22 |  |  |  |  |  |  |  |  |  |  |  |  |  |  |  |  |  |  |  |  |  |  |  |  |  |
|  | 6 | **L2 - CX** |  | 2021-03-15 | 2021-08-06 |  |  |  |  |  |  |  |  |  |  |  |  |  |  |  |  |  |  |  |  |  |  |  |  |  |
|  | 1 | **Cell 1** |  | 2021-03-15 | 2021-08-06 |  |  |  |  |  |  |  |  |  |  |  |  |  |  |  |  |  |  |  |  |  |  |  |  |  |
| MWH06-10258 |  | NETA test validation Inpections- VECA-EPS-RTS COLO-1 Cell-1 | 3d | 2021-03-15 A | 2021-03-24 A | MWH06.C1.C1400 FF, MWH06-10266 | 100% | 2021-04-17 | 2021-04-20 | VECA Electric | 797 | 2 | 3-1 | 1 | 1 | 1 | 1 | 6 | 6 | 11 |  |  |  |  |  |  |  |  |  |  |
| MWH06-10139 |  | UPM Yellow tagging - Admin & COLO-1 CELL-1 | 10d | 2021-03-31 A | 2021-04-15 A | MWH06-10381, MWH06-1967, MWH06.C1.C1420, MWH06.S.1450, MWH06-2685, MWH06-10150, MWH06-10375 FF | 100% | 2021-03-31 | 2021-04-12 | VECA Electric | 797 | 3 | 3-1 | 1 | 1 | 1 | 1 | 6 | 6 | 11 |  |  |  |  |  |  |  |  |  |  |
| MWH06-10183 |  | SE- Completed L2 QC Checklist | 10d | 2021-04-30 A | 2021-06-09 A | MWH06-10432, MWH06-10249, MWH06-9931, MWH06-10269, MWH06-10375, MWH06-10531, MWH06-10530 | 100% | 2021-06-01 | 2021-06-11 | VECA Electric | 797 | 3 | 3-1 | 1 | 1 | 1 | 1 | 6 | 6 | 11 | SE |  |  |  |  |  |  |  |  |  |
| MWH06.C1.Cx2020 |  | Network Startup | 10d | 2021-04-30 A | 2021-05-12 A | MWH06.C1.C1330 FF, MWH06-10530 | 100% | 2021-06-01 | 2021-06-11 | LINX [600 h] | 1795 | 1 |  | 1 |  | 1 |  | 6 | 6 | 11 |  | 7 | 1C | MER | CP-1 | CX |  |  |  |  |
| MWH06.C1.Cx2000 |  | Electrical Equipment Yellow Tagging (Field Terminated equipment) | 11d | 2021-05-11 A | 2021-06-30 A | MWH06-10534 FF, MWH06-10484 FF, MWH06-10532 FF+4d, MWH06-10509, MWH06-10483 FF+4d, MWH06-10252, MWH06.S.1450, MWH06.C1.C1410, MWH06.C1.C1400, MWH06.C1.C1390, MWH06.C1.C1420, MWH06-P1050, MWH06.C1.C1460, MWH06.C1.C1330, MWH06.C1.C1040, MWH06.C1.C1290 FF, MWH06.C1.C3340 FF, MWH06.C1.C2260 FF, MWH06.C1.C4320 FF, MWH06.C1.C1135, MWH06.D6.C1.C1180, MWH06.D6.C1.C1170, MWH06.D6.C1.C1160, MWH06-10258, MWH06-10332 FF+3d, MWH06-10269, MWH06-10271 FF, MWH06-10531, MWH06-10530, MWH06-10535 | 100% | 2021-06-01 | 2021-06-14 | VECA Electric [1200 h] | 1796 | 1 |  | 1 |  | 1 | 2 | 6 | 6 | 11 |  | 4 | 1C | MER | CP-3 | CX | 0 | 1 | 1 |  |
| MWH06-10143 |  | Mechanical Equipment Yellow Tag | 10d | 2021-05-29 A | 2021-06-10 A | MWH06-10508, MWH06-10489, MWH06-10475, MWH06-10375, MWH06.C1.C1410, MWH06.C1.C1420, MWH06.C1.C1130, MWH06.C1.C1320, MWH06-10531, MWH06-10530 | 100% | 2021-06-01 | 2021-06-11 | VECA Electric | 797 | 3 | 3-1 | 1 | 1 | 1 | 1 | 6 | 6 | 11 |  |  |  |  |  |  |  |  |  |  |
| MWH06.C1.Cx2005 |  | Control Power Available | 10d | 2021-06-22 A | 2021-07-02 A | MWH06-10492, MWH06-10485, MWH06.C1.Cx2000 FF, MWH06-10139, MWH06-10530 | 100% | 2021-06-30 | 2021-07-13 |  |  | 1 |  | 1 |  | 1 |  | 6 | 6 | 11 |  | 4 | 2 |  | CP-1 | CX |  |  | 1 |  |
| MWH06.C1.Cx2060 |  | EPMS Checkout / Point to Point | 10d | 2021-06-30 A | 2021-08-06 A | MWH06-10587 FF, MWH06.C1.Cx2020, MWH06.C1.Cx2005, MWH06-10530 | 100% | 2021-07-06 | 2021-07-16 | LINX [1200 h] | 3 | 1 |  | 1 |  | 1 |  | 6 | 6 | 11 |  | 7 | 1C | MER | CP-1 | CX |  |  |  |  |
| MWH06-10030 |  | Power available for Start up | 4d | 2021-07-06 A | 2021-07-09 A | MWH-06-01-POW-F, MWH06-10037 FF, MWH-06-01-UPW-F FF, MWH06-10037, MWH-06-01-UPW-F, MWH06.C1.Cx2005, MWH06-10527, MWH06-10530 | 100% |  |  |  |  | 1 |  | 1 |  | 1 |  | 6 | 6 | 11 |  | 4 | 2 |  | CP-1 | CX |  |  | 1 |  |
| MWH06.C1.Cx2080 |  | OFCI Lvl 3 Testing & Start up (Mechanical Equipment) | 12d | 2021-07-10 A | 2021-07-23 A | MWH06.C1.Cx2020, MWH06-10030, MWH06-10143, MWH06-10275, MWH06.D3.C1.C1040, MWH06-10525, MWH06-10530, MWH06-10543 FF | 100% |  |  | TCM Mechanical [640 h] | 109 | 3 |  | 1 |  | 1 |  | 6 | 6 | 11 |  | 51 |  |  |  |  |  |  |  |  |
| MWH06.C1.Cx2140 |  | OFCI Lvl 3 Testing & Start up (Electrical Equipment) | 12.8d | 2021-07-10 A | 2021-07-30 A | MWH06-10584, MWH06-10183, MWH06-10139, MWH06.C1.Cx2000, MWH06.S.1850, MWH06.S.1840, MWH06-10030, MWH06-10274, MWH06-10531, MWH06-10530, MWH06-10543 FF | 100% | 2021-07-10 | 2021-07-26 | VECA Electric [2000 h] | 1797 | 3 |  | 1 | A | 1 | 1 | 6 | 6 | 11 |  | 4 |  |  |  |  | 0 |  | 1 |  |
|  | 2 | **Cell 3** |  | 2021-03-31 | 2021-08-06 |  |  |  |  |  |  |  |  |  |  |  |  |  |  |  |  |  |  |  |  |  |  |  |  |  |
| MWH06-10190 |  | UPM Yellow tagging - COLO-1 CELL-3 | 10d | 2021-03-31 A | 2021-04-15 A | MWH06-10381, MWH06-10171, MWH06.C1.C3410, MWH06-2681, MWH06-10366, MWH06-10375 FF | 100% | 2021-03-31 | 2021-04-12 | VECA Electric | 1800 | 1 |  | 1 |  | 3 |  | 6 | 6 | 11 |  | 4 | 1C | MER | CP-3 | CX | 0 |  | 1 | Cx |
| MWH06-10188 |  | SE- Completed L2 QC Checklist | 10d | 2021-04-30 A | 2021-06-23 A | MWH06-10434, MWH06-10183, MWH06-10382, A1210, MWH06-9932, MWH06-10269, MWH06-10375, MWH06-10531, MWH06-10530 | 100% | 2021-06-14 | 2021-06-24 | VECA Electric | 1800 | 1 |  | 1 |  | 3 |  | 6 | 6 | 11 | SE | 4 | 1C | MER | CP-3 | CX | 0 |  | 1 | Cx |
| MWH06-10337 |  | NETA test validation Inpections- VECA-EPS-RTS COLO-1 Cell-3 | 3d | 2021-05-12 A | 2021-05-14 A | MWH06.C1.C3360 FF, MWH06-10531, MWH06-10530 | 100% | 2021-06-01 | 2021-06-03 | VECA Electric | 797 | 2 | 3-1 | 1 | 1 | 3 | 1 | 6 | 6 | 11 |  |  |  |  |  |  |  |  |  |  |
| MWH06.C1.Cx2030 |  | Electrical Equipment Yellow Tagging (Field Terminated equipment) | 10d | 2021-05-29 A | 2021-06-30 A | MWH06.C1.Cx2000, MWH06-10534 FF, MWH06-10484 FF, MWH06-10532 FF+4d, MWH06-10511, MWH06-10483 FF+4d, MWH06-10382, MWH06.C1.C3360, MWH06.C1.C3380, MWH06.C1.C3410, MWH06.C1.C3040, MWH06.C1.C3330, MWH06.C1.C3135, MWH06.D6.C1.C3170, MWH06.D6.C1.C3160, MWH06.D6.C1.C3180, MWH06.C1.C3470 FF+5d, MWH06-10262, MWH06-10334 FF+3d, MWH06-10269, MWH06-10271 FF, MWH06-10337, MWH06-10366, MWH06-10531, MWH06-10530, MWH06-10540 | 100% | 2021-06-10 | 2021-06-22 | VECA Electric [1200 h] | 1800 | 1 |  | 1 |  | 3 |  | 6 | 6 | 11 |  | 4 | 1C | MER | CP-3 | CX | 0 |  | 1 | Cx |
| MWH06.C1.Cx2070 |  | Network Startup | 10d | 2021-06-01 A | 2021-06-11 A | MWH06.C1.C3380, MWH06.C1.Cx2030, MWH-06-01-L2CX-S, MWH06-10530 | 100% |  |  | LINX [600 h] | 1799 | 1 |  | 1 |  | 3 |  | 6 | 6 | 11 |  | 7 | 1C | MER | CP-1 | CX |  |  |  | Cx |
| MWH06-10189 |  | Mechanical Equipment Yellow Tag | 10d | 2021-06-11 A | 2021-06-30 A | MWH06-10508, MWH06-10475, MWH06-10143, MWH06-10375, MWH06.C1.C3150, MWH06.C1.C3390, MWH06.C1.C3410, MWH06-10366, MWH06.C1.C1320, MWH06-10531, MWH06-10530 | 100% | 2021-07-13 | 2021-07-23 | VECA Electric | 1800 | 1 |  | 1 |  | 3 |  | 6 | 6 | 11 |  | 4 | 1C | MER | CP-3 | CX | 0 |  | 1 | Cx |
| MWH06-10038 |  | Control Power Available | 10d | 2021-06-22 A | 2021-07-02 A | MWH06-10492, MWH06-10485, MWH06.C1.Cx2030 FF, MWH06-10190, MWH06-10531, MWH06-10530 | 100% | 2021-06-30 | 2021-07-13 | VECA Electric | 1800 | 1 |  | 1 |  | 3 |  | 6 | 6 | 11 |  | 4 | 1C | MER | CP-3 | CX | 0 |  | 1 | Cx |
| MWH06.C1.Cx2150 |  | EPMS Checkout / Point to Point | 10d | 2021-07-06 A | 2021-08-06 A | MWH06-10587 FF, MWH06.C1.Cx2070, MWH06-10530 | 100% | 2021-06-30 | 2021-07-13 | LINX [1200 h] | 9 | 1 |  | 1 |  | 3 |  | 6 | 6 | 11 |  | 7 | 1C | MER | CP-1 | CX |  |  |  | Cx |
| MWH06-10039 |  | Power available for Start up | 4d | 2021-07-06 A | 2021-07-09 A | MWH06-10038, MWH06-10527, MWH06-10531, MWH06-10530 | 100% | 2021-07-31 | 2021-08-04 | VECA Electric | 1800 | 1 |  | 1 |  | 3 |  | 6 | 6 | 11 |  | 4 | 1C | MER | CP-3 | CX | 0 |  | 1 | Cx |
| MWH06.C1.Cx2160 |  | OFCI Lvl 3 Testing & Start up (Electrical Equipment) | 12.8d | 2021-07-10 A | 2021-07-30 A | MWH06-10584, MWH06-10188, MWH06-10139, MWH06.C1.Cx2030, MWH06.S.1850, MWH06.S.1840, MWH06-10039, MWH06-10274, MWH06-10531, MWH06-10530 | 100% | 2021-07-10 | 2021-07-26 | VECA Electric [2000 h] | 1801 | 3 |  | 1 |  | 3 |  | 6 | 6 | 11 |  | 4 |  |  |  |  | 0 |  | 1 |  |
| MWH06.C1.Cx2180 |  | OFCI Lvl 3 Testing & Start up (Mechanical Equipment) | 12d | 2021-07-10 A | 2021-07-23 A | MWH06.C1.Cx2070 SS+5d, MWH06-10039, MWH06-10189, MWH06-10275, MWH06.D3.C1.C3040, MWH06-10525, MWH06-10530 | 100% |  |  | TCM Mechanical [640 h] | 111 | 3 |  | 1 |  | 3 |  | 6 | 6 | 11 |  | 51 |  |  |  |  |  |  |  |  |

| ID | WBS | Activity | Duration | Start | Finish | Predecessors | Complete | Planned start | Planned finish | Resources | MSP Activity ID | VECA % Complete | HRA - Safety Level | COLO | Critical Path | TRADE | MSFT-Funding Releases | CELL | WBS | MWH06- TRADES | CRITICAL PATH-3 | PHASE | Critical Path mer to COLO | HRA - Required Permit- Priority-1 | HRA - Required Permit- Priority-2 | SE activities | MV CREW | HOT ITEMS | Critical Path-2 | Critical Path-1 | COLO CRITICAL |
| --- | --- | --- | --- | --- | --- | --- | --- | --- | --- | --- | --- | --- | --- | --- | --- | --- | --- | --- | --- | --- | --- | --- | --- | --- | --- | --- | --- | --- | --- | --- | --- |
|  | 3 | **Cell 2** |  | 2021-03-31 | 2021-08-06 |  |  |  |  |  |  |  |  |  |  |  |  |  |  |  |  |  |  |  |  |  |  |  |  |  |  |
| MWH06-10193 |  | UPM Yellow tagging - COLO-1 CELL-2 | 10d | 2021-03-31 A | 2021-04-15 A | MWH06-10381, MWH06-10175, MWH06.C1.C2430, MWH06.S.1430, MWH06-10375 FF | 100% | 2021-03-31 | 2021-04-12 | VECA Electric | 1804 | 0 | 1 | 1 | Cx | 4 | 1C | 2 | 6 | MER | CP-3 | CX | 1 | 6 | 11 |  |  |  |  |  |  |
| MWH06-10191 |  | SE- Completed L2 QC Checklist | 10d | 2021-04-30 A | 2021-06-17 A | MWH06-10433, A1200, MWH06-9933, MWH06-10269, MWH06-10375, MWH06-10531, MWH06-10530 | 100% | 2021-06-01 | 2021-06-11 | VECA Electric | 1804 | 0 | 1 | 1 | Cx | 4 | 1C | 2 | 6 | MER | CP-3 | CX | 1 | 6 | 11 | SE |  |  |  |  |  |
| MWH06-10338 |  | NETA test validation Inpections- VECA-EPS-RTS COLO-1 Cell-2 | 3d | 2021-05-03 A | 2021-05-05 A | MWH06.C1.C2380 FF, MWH06-10531, MWH06-10530 | 100% | 2021-06-01 | 2021-06-03 | VECA Electric | 797 |  | 2 | 1 |  |  |  | 2 | 6 |  |  |  |  | 6 | 11 |  | 3-1 | 1 | 1 |  |  |
| MWH06.C1.Cx2010 |  | Electrical Equipment Yellow Tagging (Field Terminated equipment) | 10d | 2021-05-19 A | 2021-06-30 A | MWH06-10534 FF, MWH06-10484 FF, MWH06-10532 FF+4d, MWH06-10510, MWH06-10483 FF+4d, MWH06.S.1430, MWH06.C1.C2380, MWH06.C1.C2370, MWH06.C1.C2430, MWH06.C1.C2460, MWH06.C1.C2040, MWH06.C1.C2310 FF+6d, MWH06.C1.C2135, MWH06.D6.C1.C2170, MWH06.D6.C1.C2160, MWH06.D6.C1.C2180 FF, MWH06-10261, MWH06-10335 FF+3d, MWH06-10269, MWH06-10271 FF, MWH06-10338, MWH06-10531, MWH06-10530, MWH06-10539 | 100% | 2021-06-01 | 2021-06-11 | VECA Electric [1200 h] | 1804 | 0 | 1 | 1 | Cx | 4 | 1C | 2 | 6 | MER | CP-3 | CX | 1 | 6 | 11 |  |  |  |  |  |  |
| MWH06-10192 |  | Mechanical Equipment Yellow Tag | 10d | 2021-06-01 A | 2021-06-11 A | MWH06-10508, MWH06-10490, MWH06-10475, MWH06-10375, MWH06.C1.C2140, MWH06.C1.C2420, MWH06.C1.C2430, MWH06.C1.C1320, MWH06-10531, MWH06-10530 | 100% | 2021-06-30 | 2021-07-13 | VECA Electric | 1804 | 0 | 1 | 1 | Cx | 4 | 1C | 2 | 6 | MER | CP-3 | CX | 1 | 6 | 11 |  |  |  |  |  |  |
| MWH06.C1.Cx2040 |  | Network Startup | 10d | 2021-06-01 A | 2021-07-13 A | MWH06.C1.C2370, MWH06.C1.Cx2010, MWH-06-01-L2CX-S, MWH06-10530 | 100% | 2021-06-30 | 2021-07-13 | LINX [600 h] | 1803 |  | 1 | 1 | Cx | 7 | 1C | 2 | 6 | MER | CP-1 | CX |  | 6 | 11 |  |  |  |  |  |  |
| MWH06-10040 |  | Control Power Available | 10d | 2021-06-22 A | 2021-07-02 A | MWH06-10492, MWH06-10485, MWH06.C1.Cx2010 FF, MWH06-10193, MWH06-10531, MWH06-10530, MWH06-10539 | 100% | 2021-06-30 | 2021-07-13 | VECA Electric | 1804 | 0 | 1 | 1 | Cx | 4 | 1C | 2 | 6 | MER | CP-3 | CX | 1 | 6 | 11 |  |  |  |  |  |  |
| MWH06.C1.Cx2090 |  | EPMS Checkout / Point to Point | 10d | 2021-06-30 A | 2021-08-06 A | MWH06-10587 FF, MWH06.C1.Cx2040, MWH06-10530 | 100% | 2021-07-06 | 2021-07-16 | LINX [1200 h] | 15 |  | 1 | 1 | Cx | 7 | 1C | 2 | 6 | MER | CP-1 | CX |  | 6 | 11 |  |  |  |  |  |  |
| MWH06-10041 |  | Power available for Start up | 4d | 2021-07-06 A | 2021-07-09 A | MWH06-10040, MWH06-10527, MWH06-10531, MWH06-10530 | 100% |  |  | VECA Electric | 1804 | 0 | 1 | 1 | Cx | 4 | 1C | 2 | 6 | MER | CP-3 | CX | 1 | 6 | 11 |  |  |  |  |  |  |
| MWH06.C1.Cx2110 |  | OFCI Lvl 3 Testing & Start up (Mechanical Equipment) | 12d | 2021-07-06 A | 2021-07-19 A | MWH06.C1.Cx2040, MWH06-10041, MWH06-10192, MWH06-10275, MWH06.D3.C1.C2040 FF, MWH06-10525, MWH06-10530 | 100% |  |  | TCM Mechanical [640 h] | 112 |  | 3 | 1 |  | 51 |  | 2 | 6 |  |  |  |  | 6 | 11 |  |  |  |  |  |  |
| MWH06.C1.Cx2130 |  | OFCI Lvl 3 Testing & Start up (Electrical Equipment) | 12.8d | 2021-07-06 A | 2021-07-30 A | MWH06-10584, MWH06-10191, MWH06-10139, MWH06.C1.Cx2010, MWH06.S.1850, MWH06.S.1840, MWH06-10041, MWH06-10274, MWH06-10531, MWH06-10530 | 100% | 2021-07-06 | 2021-07-20 | VECA Electric [2000 h] | 1805 | 0 | 3 | 1 |  | 4 |  | 2 | 6 |  |  |  | 1 | 6 | 11 |  |  |  |  |  |  |
|  | 4 | **Cell 4** |  | 2021-03-31 | 2021-08-06 |  |  |  |  |  |  |  |  |  |  |  |  |  |  |  |  |  |  |  |  |  |  |  |  |  |  |
| MWH06-10196 |  | UPM Yellow tagging - COLO-1 CELL-4 | 10d | 2021-03-31 A | 2021-04-15 A | MWH06-10381, MWH06-10179, MWH06.C1.C4440, MWH06-2677, MWH06-10375 FF | 100% | 2021-03-31 | 2021-04-12 | VECA Electric | 1808 | 0 | 1 | 1 | Cx | 4 | 1C | 4 | 6 |  | CP-3 | CX | 1 | 6 | 11 |  |  |  |  | 2 |  |
| MWH06-10194 |  | SE- Completed L2 QC Checklist | 10d | 2021-04-30 A | 2021-06-23 A | MWH06-10435, MWH06-10191, A1190, MWH06-9934, MWH06-10269, MWH06-10375, MWH06-10531, MWH06-10530 | 100% | 2021-06-14 | 2021-06-24 | VECA Electric | 1808 | 0 | 1 | 1 | Cx | 4 | 1C | 4 | 6 |  | CP-3 | CX | 1 | 6 | 11 | SE |  |  |  | 2 |  |
| MWH06-10339 |  | NETA test validation Inpections- VECA-EPS-RTS COLO-1 Cell-4 | 3d | 2021-06-01 A | 2021-06-03 A | MWH06.C1.C4360 FF, MWH06-10531, MWH06-10530 | 100% | 2021-06-30 | 2021-07-02 | VECA Electric | 797 |  | 2 | 1 |  |  |  | 4 | 6 |  |  |  |  | 6 | 11 |  | 3-1 | 1 | 1 |  |  |
| MWH06.C1.Cx2100 |  | Network Startup | 10d | 2021-06-01 A | 2021-07-13 A | A1180, MWH06.C1.C4380, MWH06.C1.Cx2050, MWH-06-01-L2CX-S, MWH06-10530 | 100% | 2021-06-30 | 2021-07-13 | LINX [600 h] | 1807 |  | 1 | 1 | Cx | 7 | 1C | 4 | 6 | 27 | CP-1 | CX |  | 6 | 11 |  |  |  |  | 2 |  |
| MWH06-10195 |  | Mechanical Equipment Yellow Tag | 10d | 2021-06-14 A | 2021-06-30 A | MWH06-10508, MWH06-10475, MWH06-10192, MWH06-10375, MWH06.C1.C4150, MWH06.C1.C4410, MWH06.C1.C4440, MWH06.C1.C1320, MWH06-10531, MWH06-10530 | 100% | 2021-07-02 | 2021-07-15 | VECA Electric | 1808 | 0 | 1 | 1 | Cx | 4 | 1C | 4 | 6 |  | CP-3 | CX | 1 | 6 | 11 |  |  |  |  | 2 |  |
| MWH06.C1.Cx2050 |  | Electrical Equipment Yellow Tagging (Field Terminated equipment) | 10d | 2021-06-21 A | 2021-06-30 A | MWH06.C1.Cx2010, MWH06-10534 FF, MWH06-10484 FF, MWH06-10532 FF+4d, MWH06-10512, MWH06-10483 FF+4d, MWH06-2677, MWH06.C1.C4210, MWH06.C1.C4360, MWH06.C1.C4380, MWH06.C1.C4440, MWH06.C1.C4290, MWH06.C1.C4470 FF, MWH06.C1.C4040, MWH06.C1.C4135, MWH06.D6.C1.C4170, MWH06.D6.C1.C4160, MWH06.D6.C1.C4180, MWH06-10263, MWH06-10333 FF+3d, MWH06-10269, MWH06-10271 FF, MWH06-10339, MWH06-10531, MWH06-10530, MWH06-10541 | 100% | 2021-07-07 | 2021-07-17 | VECA Electric [1200 h] | 1808 | 0 | 1 | 1 | Cx | 4 | 1C | 4 | 6 |  | CP-3 | CX | 1 | 6 | 11 |  |  |  |  | 2 | 1 |
| MWH06-10042 |  | Control Power Available | 10d | 2021-06-22 A | 2021-07-02 A | MWH06-10492, MWH06-10485, A1180 SS, MWH06.C1.Cx2050 FF, MWH06-10196, MWH06-10531, MWH06-10530, MWH06-10541 | 100% |  |  | VECA Electric | 1808 | 0 | 1 | 1 | Cx | 4 | 1C | 4 | 6 |  | CP-3 | CX | 1 | 6 | 11 |  |  |  |  | 2 | 1 |
| MWH06.C1.Cx2190 |  | EPMS Checkout / Point to Point | 10d | 2021-06-30 A | 2021-08-06 A | MWH06-10587 FF, MWH06.C1.Cx2100, MWH06-10530 | 100% | 2021-07-06 | 2021-07-16 | LINX [1200 h] | 1809 |  | 1 | 1 | Cx | 7 | 1C | 4 | 6 |  | CP-1 | CX |  | 6 | 11 |  |  |  |  |  |  |
| MWH06-10043 |  | Power available for Start up | 4d | 2021-07-06 A | 2021-07-09 A | MWH06-10042, MWH06-10527, MWH06-10531, MWH06-10530 | 100% |  |  | VECA Electric | 1808 | 0 | 1 | 1 | Cx | 4 | 1C | 4 | 6 |  | CP-3 | CX | 1 | 6 | 11 |  |  |  |  | 2 | 1 |
| MWH06.C1.Cx2120 |  | OFCI Lvl 3 Testing & Start up (Electrical Equipment) | 12.8d | 2021-07-10 A | 2021-07-30 A | MWH06-10584, MWH06-10194, A1180, MWH06-10139, MWH06.C1.Cx2050, MWH06.S.1850, MWH06.S.1840, MWH06-10043, MWH06-10274, MWH06-10531, MWH06-10530 | 100% | 2021-07-10 | 2021-07-26 | VECA Electric [2000 h] | 1810 | 0 | 3 | 1 |  | 4 |  | 4 | 6 |  |  |  | 1 | 6 | 11 |  |  |  |  | 2 | 1 |
| MWH06.C1.Cx2170 |  | OFCI Lvl 3 Testing & Start up (Mechanical Equipment) | 12d | 2021-07-10 A | 2021-07-23 A | MWH06.C1.Cx2100 SS+5d, MWH06-10043, MWH06-10195, MWH06-10275, MWH06.D3.C1.C4030, MWH06-10525, MWH06-10530 | 100% |  |  | TCM Mechanical [640 h] | 110 |  | 3 | 1 |  | 51 |  | 4 | 6 |  |  |  |  | 6 | 11 |  |  |  |  | 2 |  |

| ID | WBS | Activity | Duration | Start | Finish | Predecessors | Complete | Remaining | Planned start | Planned finish | Total float | Free float | Expected finish | Calendar | Resources | MSP Activity ID | HRA - Safety Level | COLO | TRADE | HOT ITEMS | Critical Path-1 | CELL | Critical Path-2 | WBS | Critical Path mer to COLO | HRA - Required Permit- Priority-1 | HRA - Required Permit- Priority-2 | VECA % Complete | SE activities | COLO CRITICAL | Critical Path | MSFT-Funding Releases | CRITICAL PATH-3 | PHASE | MWH06- TRADES | VECA- Changed | MV CREW |
| --- | --- | --- | --- | --- | --- | --- | --- | --- | --- | --- | --- | --- | --- | --- | --- | --- | --- | --- | --- | --- | --- | --- | --- | --- | --- | --- | --- | --- | --- | --- | --- | --- | --- | --- | --- | --- | --- |
|  | 7 | **L3 - CX** |  | 2021-07-10 | 2021-10-02 |  |  |  |  |  |  |  |  |  |  |  |  |  |  |  |  |  |  |  |  |  |  |  |  |  |  |  |  |  |  |  |  |
| MWH06-10032 |  | Admin GEN SCR testing and Burnins | 5d | 2021-07-10 A | 2021-07-15 A | MWH06-10043, MWH06-10041, MWH06-10039, MWH06-10030, MWH06-10034, MWH06-10161, MWH06.AD.Cx2000, MWH06-10530 | 100% |  |  |  |  |  |  |  | TCM Mechanical | 1815 | 2 | A | 51 | A | 2 | ADMIN | 1 | 6 | 1 | 6 | 11 |  |  |  |  |  |  |  |  |  |  |
| MWH06-10586 |  | ATS- Lvl 3 Testing & Start up (Electrical Equipment) | 5d | 2021-07-10 A | 2021-09-15 | MWH06-10585, MWH06-10584, MWH06-10194, A1180, MWH06-10139, MWH06.C1.Cx2050, MWH06.S.1850, MWH06.S.1840, MWH06-10043, MWH06-10274, MWH06-10531, MWH06-10530, MWH06-10607, MWH06.C1.Cx3020.1 | 60% | 2d | 2021-07-10 | 2021-07-15 | -23d | 10d |  |  | VECA Electric [2000 h] | 1810 | 3 | 1 | 4 |  | 2 | Cx-3 |  | 6 | 1 | 6 | 11 | 0 | SE | 1 |  |  |  |  |  |  |  |
| MWH06.C1.Cx3000 |  | Hydronic Pipe Flush (Open and closed Loop) | 12d | 2021-07-13 A | 2021-07-28 A | MWH-06-01-MEP-F, MWH06-9726, MWH06-9724, MWH06.C1.Cx2120 FF+0.8d, MWH06.C1.Cx2130 FF+1.6d, MWH06.C1.Cx2160 FF+1.6d, MWH06.C1.Cx2140 FF+1.6d, MWH-06-01-MER-F, MWH06-10530 | 100% |  |  |  |  |  |  |  | TCM Mechanical [1200 h] | 1815 | 2 | 1 | 51 | A | 2 | Cx-3 | 1 | 7 | 1 | 6 | 11 |  |  | 1 |  |  |  |  |  |  |  |
| MWH06-10031 |  | GEN SCR testing and Burnins | 15d | 2021-07-14 A | 2021-08-13 A | A1180 SS+5d, MWH06.C1.Cx2050 SS+5d, MWH06.C1.Cx2000, MWH06.C1.Cx2010, MWH06.C1.Cx2030 SS+5d, MWH06-10150, MWH06-10171, MWH06-10175, MWH06-10179, MWH06-10530 | 100% |  | 2021-07-14 | 2021-07-31 |  |  |  |  | TCM Mechanical | 1815 | 2 | 1 | 51 | A | 2 | Cx-3 | 1 | 7 | 1 | 6 | 11 |  |  |  |  |  |  |  |  |  |  |
| MWH06.C1.Cx3020 |  | BAS Prefunctional Testing on Construction Server | 20d | 2021-07-26 A | 2021-08-28 A | MWH06.C1.Cx2170, MWH06.C1.Cx2110, MWH06.C1.Cx2180, MWH06.C1.Cx2080, MWH06.C1.C4240, MWH06.C1.C2200, MWH06.C1.C3280, MWH06.C1.C1220, MWH06-C1.P2000, MWH06-10036, MWH06-10530 | 100% |  | 2021-07-31 | 2021-08-24 |  |  |  |  | LINX [2000 h] | 1812 | 1 | 1 | 7 |  |  | Cx-3 |  | 7 |  | 6 | 11 |  |  |  |  |  |  |  |  |  |  |
| MWH06.C1.Cx3010 |  | Cooling Automation | 12d | 2021-07-31 A | 2021-08-12 A | MWH06-10584, MWH06-10583, MWH06.C1.Cx2170, MWH06.C1.Cx2120, MWH06.C1.Cx2130, MWH06.C1.Cx2110, MWH06.C1.Cx2160, MWH06.C1.Cx2180, MWH06.C1.Cx2140, MWH06.C1.Cx2080, MWH06.C1.Cx3000, MWH06-10036, MWH06-10035, MWH06-10530 | 100% |  | 2021-07-31 | 2021-08-13 |  |  |  |  | TCM Mechanical [1200 h] | 1814 | 1 | 1 | 51 | A | 2 | Cx-3 | 1 | 7 | 1 | 6 | 11 |  |  | 1 |  |  |  |  |  |  |  |
| MWH06.C1.Cx3030 |  | Load Bank & IR Scan | 18d | 2021-08-13 A | 2021-09-03 | MWH06-10581 FF, MWH06-10376, MWH-06-01-POW-F, MWH06-10139, MWH06.S.1840, MWH06.C1.Cx2190, MWH06.C1.Cx2090, MWH06.C1.Cx2150, MWH06.C1.Cx2060, MWH06.AD.Cx2020, MWH06.C1.Cx3010, MWH06.S.1850, MWH-06-01-EPM-F FF, MWH-06-01-L2CX-F, MWH-06-01-GEN-F, MWH-06-01-UPW-F, MWH06-10031, MWH06-10032, MWH06-10037, MWH06-10271, MWH06-10531, MWH06-10530 | 78% | 4d | 2021-09-15 | 2021-10-06 | -31d | 0d |  |  | VECA Electric [3600 h] | 1813 | 3 | 1 | 4 | A | 2 | Cx-3 | 1 | 7 | 1 | 6 | 4 | 0 |  | 1 | Cx | 1C | CP-1 | CX |  |  |  |
| MWH06.C1.Cx3020.1 |  | Additional Go-Back loadbanking (ASCO) | 3d | 2021-09-10 | 2021-09-13 | MWH06-10607 |  |  |  |  | -23d | 0d |  |  | VECA Electric [3600 h] | 1813 | 3 | 1 | 4 | A | 2 | Cx-3 | 1 | 7 | 1 | 6 | 4 | 0 | SE | 1 | Cx | 1C | CP-1 | CX |  |  |  |
| MWH06.C1.Cx3040 |  | Level 3 Cx - ADMIN AND COLO1 | 12d | 2021-09-17 | 2021-10-01 | MWH06-10573, MWH06-10584 FF, MWH06-10583 FF, MWH06-10582 FF, MWH06-10581, MWH-06-01-BAS-F FF+10d, MWH06.C1.Cx3030, MWH06.C1.Cx3020 FF+10d, MWH-06-01-BAS-F, MWH06.C1.C1440, MWH06.C1.C3450, MWH06.C1.C2450, MWH06.C1.C4450, MWH06.C1.C1320, MWH06.C1.C3230, MWH06.C1.C2300, MWH06.C1.C4290, MWH06.C1.C1340, MWH06.C1.C3310, MWH06.C1.C2320, MWH06.C1.C4300, MWH06-10531, MWH06-10530, MWH06.C1.Cx3020.1 FF+3d, MWH06-10586 FF+3d, MWH06.C1.Cx2060, MWH06-10608 FF+5d, MWH06-10609 FF+5d |  |  |  |  | -33d | 0d |  |  | VECA Electric [1200 h] | 7 | 1 | 1 | 4 | A | 2 | Cx-3 | 1 | 7 | 1 | 6 | 11 | 0 |  | 1 | Cx | 1C | CP-1 | CX | MER |  |  |
| MWH06.C1.Cx3050 |  | Weather (5 Days) - 3 remaining Check Delay #14 for updates | 0d | 2021-10-02 | 2021-10-02 | MWH-06-01-FIR-F, MWH-06-01-EPMS-F, MWH06.C1.C4400, MWH06.AD.Cx2000, MWH06.AD.Cx2020, MWH06.C1.Cx2060, MWH06.C1.Cx2150, MWH06.C1.Cx2090, MWH06.C1.Cx3040, MWH06-10146, MWH06-9915, MWH06-9914, MWH06-10530 |  |  |  |  | -33d | 0d |  |  |  | 4 |  | 1 |  | A | 2 | Cx-3 | 1 | 7 | 1 |  |  |  |  | 1 |  |  |  |  |  |  |  |
|  | 5 | **L4 & L5 - IST** |  | 2021-10-02 | 2021-11-22 |  |  |  |  |  |  |  |  |  |  |  |  |  |  |  |  |  |  |  |  |  |  |  |  |  |  |  |  |  |  |  |  |
| MWH06.C1.Cx4030 |  | MST Ready for Network Install | 11d | 2021-10-02 | 2021-10-14 | MWH.06.M1010, MWH06-10530 |  |  |  |  | -22d | 0d |  |  |  | 107 | 1 | 1 |  |  |  | Cx-4 |  |  |  | 6 | 11 |  |  |  |  |  |  |  |  |  |  |
| MWH06.C1.Cx4000 |  | COLO 1 Level 4 & Level 5 IST | 28d | 2021-10-02 | 2021-10-29 | MWH06.C1.C4460, MWH06.C1.C2440, MWH06.C1.C3460, MWH06.C1.C1430, MWH06.S.1830, MWH.06.M1010, MWH06.C1.C4490, MWH06-10531, MWH06-10530, MWH06-10582 FF |  |  |  |  | -42d | 0d |  | 7-8s wo/Holidays Clayco | VECA Electric [2240 h] | 106 | 2 | 1 | 4 |  |  | Cx-4 |  |  |  | 6 | 11 | 0 |  |  | Cx | 1C | CP-1 |  |  |  |  |
| MWH06.C1.Cx4010 |  | Security Commissioning (level2 with Corp net after IST) | 10d | 2021-10-30 | 2021-11-08 | MWH06.C1.Cx4000, MWH-06-01-FIR-F, MWH-06-01-EPMS-F, MWH06.C1.Cx3040, MWH06-10148, MWH06-10185, MWH06-10186, MWH06-10187, MWH06-10530 |  |  |  |  | -38d | 0d |  | 7-8s w/Holidays Clayco |  | 107 | 1 | 1 |  |  |  | Cx-4 |  |  |  | 6 | 11 |  |  |  |  |  |  |  |  |  |  |
| MWH06.C1.Cx4020 |  | Punch List - Admin/COLO 1 | 14d | 2021-10-30 | 2021-11-12 | MWH-06-01-RNI-F, MWH-06-01-FIR-F, MWH-06-01-L5CX-F, MWH-06-01-L4CX-F, MWH-06-01-EPMS-F, MWH06.C1.Cx4000, MWH06.C1.Cx3040, MWH06.C1.C4400, MWH06-C1.P2100, MWH06-10530 |  |  |  |  | -42d | 0d |  | 7-8s w/Holidays Clayco |  | 46 | 1 | 1 |  |  |  | Cx-4 |  |  |  | 6 | 11 |  |  |  |  |  |  |  |  |  |  |
| MWH06.C1.Cx4011 |  | Security Commissioning (level3 DCPS) | 5d | 2021-11-09 | 2021-11-13 | MWH06.C1.Cx4010, MWH06.C1.Cx4000, MWH-06-01-FIR-F, MWH-06-01-EPMS-F, MWH06.C1.Cx3040, MWH06-10148, MWH06-10185, MWH06-10186, MWH06-10187, MWH06-10530 |  |  |  |  | -38d | 0d |  | 7-8s w/Holidays Clayco |  | 107 | 1 | 1 |  |  |  | Cx-4 |  |  |  | 6 | 11 |  |  |  |  |  |  |  |  |  |  |
| MWH06.C1.Cx4050 |  | Final Clean/ ready for lock down | 8d | 2021-11-13 | 2021-11-22 | MWH06-10599, MWH-06-01-SC-F, MWH06.C1.Cx4020, MWH06-10531, MWH06-10530 |  |  |  |  | -34d | 0d |  |  | VECA Electric [2240 h] | 106 | 1 | 1 | 4 |  |  | Cx-4 |  |  |  | 6 | 11 | 0 |  |  | Cx | 1C | CP-1 |  |  |  |  |
|  | 2 | **COLO-2 Cx** |  | 2021-05-12 | 2022-01-21 |  |  |  |  |  |  |  |  |  |  |  |  |  |  |  |  |  |  |  |  |  |  |  |  |  |  |  |  |  |  |  |  |
|  | 6 | **L2** |  | 2021-05-12 | 2021-10-07 |  |  |  |  |  |  |  |  |  |  |  |  |  |  |  |  |  |  |  |  |  |  |  |  |  |  |  |  |  |  |  |  |
|  | 1 | **Cell 1** |  | 2021-06-09 | 2021-10-05 |  |  |  |  |  |  |  |  |  |  |  |  |  |  |  |  |  |  |  |  |  |  |  |  |  |  |  |  |  |  |  |  |
| MWH06-10197 |  | SE- Completed L2 QC Checklist | 10d | 2021-06-09 A | 2021-08-02 A | MWH06-10590 FF+2d, MWH06-10588 FF, MWH06-10444, MWH06.D6.C2.C1180 FF, MWH06-10513 FF, MWH06-9935, MWH06-10319, MWH06-10531, MWH06-10530 | 100% |  | 2021-06-30 | 2021-07-13 |  |  |  |  | VECA Electric | 1821 | 1 | 2 | 4 |  |  | 1 |  | 6 | 2 | 6 | 11 | 0 | SE |  |  | 2 |  |  |  |  |  |
| MWH06-10198 |  | Mechanical Equipment Yellow Tag | 10d | 2021-07-01 A | 2021-09-13 | MWH06-10476, MWH06.C2.C1130, MWH06.C2.C1430, MWH06.C2.C1410, MWH06.D3.C2.C1030, MWH06.D3.C2.C1030 FF, MWH06-10531, MWH06-10530 |  | 10d | 2021-07-31 | 2021-08-11 | -39d | 2d |  |  | VECA Electric | 1821 | 1 | 2 | 4 |  |  | 1 |  | 6 | 2 | 6 | 11 | 0 |  |  |  | 2 |  |  |  |  |  |
| MWH06.C2.Cx2010 |  | Electrical Equipment Yellow Tagging (Field Terminated equipment) | 10d | 2021-07-21 A | 2021-09-01 | MWH06-10197 FF, MWH06-10513, MWH06-10496, MWH06.S.1490, MWH06.C2.C1260 FF, MWH06.C2.C1390, MWH06.C2.C1340, MWH06.C2.C1410, MWH06.C2.C1460, MWH06-1996, MWH06-1993, MWH06-2004, MWH06.C2.C1135, MWH06.D6.C2.C1160, MWH06.D6.C2.C1170, MWH06.D6.C2.C1180, MWH06-10273, MWH06-10340, MWH06-10531, MWH06-10530, MWH06-10546, MWH06-10610 FF | 80% | 2d | 2021-08-04 | 2021-08-16 | -47d | 0d | 2021-09-01 |  | VECA Electric [1200 h] | 1821 | 1 | 2 | 4 |  |  | 1 |  | 6 | 2 | 6 | 11 | 0 |  |  |  | 2 |  |  |  | 1 |  |
| MWH06-10340 |  | NETA test validation Inpections- VECA-EPS-RTS COLO-2 Cell-1 | 3d | 2021-07-27 A | 2021-07-29 A | MWH06.C2.C1390 FF, MWH06-10273 FF, MWH06-10531, MWH06-10530 | 100% |  | 2021-07-31 | 2021-08-03 |  |  |  |  | VECA Electric | 797 | 2 | 2 |  | 1 |  | 1 | 1 | 6 |  | 6 | 11 |  |  |  |  |  |  |  |  |  | 3-1 |
| MWH06-10199 |  | UPM Yellow tagging -COLO-2 CELL-1 | 4d | 2021-07-30 A | 2021-08-11 A | MWH06-10381, MWH06.C2.C1410, MWH06.S.1490, MWH06-10282, MWH06-10531, MWH06-10530 | 100% |  | 2021-07-31 | 2021-08-04 |  |  |  |  | VECA Electric | 1821 | 1 | 2 | 4 |  |  | 1 |  | 6 | 2 | 6 | 11 | 0 |  |  |  | 2 |  |  |  |  |  |
| MWH06-10044 |  | Control Power Available | 10d | 2021-08-18 A | 2021-09-10 | MWH06.C2.Cx2010 FF+6d, MWH06-10531, MWH06-10530, MWH06-10603 | 70% | 3d | 2021-08-31 | 2021-09-13 | -47d | 0d |  |  | VECA Electric | 1821 | 1 | 2 | 4 |  |  | 1 |  | 6 | 2 | 6 | 11 | 0 |  |  |  | 2 |  |  |  |  |  |
| MWH06.C2.Cx2040 |  | Network Startup | 10d | 2021-08-31 | 2021-09-13 | MWH06.C2.C1340, MWH-06-02-L2CX-S, MWH06-10530 |  |  |  |  | -35d | 0d |  |  | LINX [600 h] | 1820 | 1 | 2 | 7 |  |  | 1 |  | 6 |  | 6 | 11 |  |  |  |  | 2 |  |  | 27 |  |  |
| MWH06.C2.Cx2090 |  | EPMS Checkout / Point to Point | 10d | 2021-08-31 | 2021-09-13 | MWH06-10530 |  |  |  |  | -15d | 20d |  |  | LINX [1200 h] | 25 | 1 | 2 | 7 |  |  | 1 |  | 6 |  | 6 | 11 |  |  |  |  | 2 |  |  |  |  |  |
| MWH06-10045 |  | Power available for Start up | 4d | 2021-09-11 | 2021-09-15 | MWH06-10044 SS+1d, MWH06-10531, MWH06-10530, MWH06-10199, MWH06-10044 |  |  |  |  | -47d | 0d |  |  | VECA Electric | 1821 | 1 | 2 | 4 |  |  | 1 |  | 6 | 2 | 6 | 11 | 0 |  |  |  | 2 |  |  |  |  |  |
| MWH06.C2.Cx2110 |  | OFCI Lvl 3 Testing & Start up (Electrical Equipment) | 16d | 2021-09-16 | 2021-10-05 | MWH06-10197, MWH06.C2.Cx2010, MWH06-10045, MWH06-10531, MWH06-10530 |  |  |  |  | -47d | 2d |  |  | VECA Electric [2000 h] | 1822 | 3 | 2 | 4 |  |  | 1 |  | 6 | 2 | 6 | 11 | 0 |  |  |  | 2 |  |  |  |  |  |
| MWH06.C2.Cx2130 |  | OFCI Lvl 3 Testing & Start up (Mechanical Equipment) | 12d | 2021-09-16 | 2021-09-30 | MWH06.C2.Cx2040 SS+6d, MWH06-10045, MWH06-10198, MWH06-10530 |  |  |  |  | -41d | 5d |  |  | TCM Mechanical [640 h] | 169 | 3 | 2 | 51 |  |  | 1 |  | 6 |  | 6 | 11 |  |  |  |  | 2 |  |  |  |  |  |

Notes:
- MWH06.C1.Cx3030: VECA Update Notes: Incentive is based on 18 day durration from start to complete paperwork
- MWH06.C1.Cx3020.1: VECA Update Notes: Incentive is based on 18 day durration from start to complete paperwork

| ID | WBS | Activity | Duration | Start | Finish | Predecessors | Complete | Remaining | Planned start | Planned finish | Total float | Free float | Expected finish | Resources | MSP Activity ID | VECA % Complete | HRA - Safety Level | SE activities | COLO | TRADE | MSFT-Funding Releases | CELL | WBS | Critical Path mer to COLO | HRA - Required Permit- Priority-1 | HRA - Required Permit- Priority-2 | MV CREW | HOT ITEMS | Critical Path-2 | VECA- Changed | MWH06- TRADES |
| --- | --- | --- | --- | --- | --- | --- | --- | --- | --- | --- | --- | --- | --- | --- | --- | --- | --- | --- | --- | --- | --- | --- | --- | --- | --- | --- | --- | --- | --- | --- | --- |
|  | 2 | **Cell 3** |  | 2021-06-15 | 2021-10-07 |  |  |  |  |  |  |  |  |  |  |  |  |  |  |  |  |  |  |  |  |  |  |  |  |  |  |
| MWH06-10200 |  | SE- Completed L2 QC Checklist | 10d | 2021-06-15 A | 2021-08-02 A | MWH06-10589, MWH06-10446, MWH06.D6.C2.C3180 FF, MWH06-10515 FF, MWH06-9937, MWH06-10321, MWH06-10531, MWH06-10530 | 100% |  | 2021-07-14 | 2021-07-26 |  |  |  | VECA Electric | 1825 | 0 | 1 | SE | 2 | 4 | 2 | 3 | 6 | 2 | 6 | 11 |  |  |  |  |  |
| MWH06-10201 |  | Mechanical Equipment Yellow Tag | 10d | 2021-07-01 A | 2021-09-21 | MWH06-10476, MWH06.C2.C3150, MWH06.C2.C3430, MWH06.C2.C3380, MWH06.D3.C2.C3040, MWH06-10531, MWH06-10530 |  | 17d | 2021-07-31 | 2021-08-11 | -46d | 0d | 2021-08-20 | VECA Electric | 1825 | 0 | 1 |  | 2 | 4 | 2 | 3 | 6 | 2 | 6 | 11 |  |  |  |  |  |
| MWH06-10341 |  | NETA test validation Inpections- VECA-EPS-RTS COLO-2 Cell-3 | 3d | 2021-07-27 A | 2021-07-29 A | MWH06.C2.C3360 FF, MWH06-10273 FF, MWH06-10531, MWH06-10530 | 100% |  | 2021-07-31 | 2021-08-03 |  |  |  | VECA Electric | 797 |  | 2 |  | 2 |  |  | 3 | 6 |  | 6 | 11 | 3-1 | 1 | 1 |  |  |
| MWH06-10202 |  | UPM Yellow tagging -COLO-2 CELL-3 | 0d | 2021-07-30 A | 2021-08-11 A | MWH06-10381, MWH06.C2.C3380, MWH06-2682, MWH06-10531, MWH06-10530 | 100% |  | 2021-05-12 | 2021-05-12 |  |  |  | VECA Electric | 1825 | 0 | 1 |  | 2 | 4 | 2 | 3 | 6 | 2 | 6 | 11 |  |  |  |  |  |
| MWH06.C2.Cx2050 |  | Electrical Equipment Yellow Tagging (Field Terminated equipment) | 10d | 2021-08-05 A | 2021-09-01 | MWH06-10200 FF, MWH06.C2.Cx2010 FF, MWH06-10515, MWH06-10498, MWH06-2682, MWH06.C2.C3320 FF, MWH06.C2.C3360, MWH06.C2.C3330, MWH06.C2.C3380, MWH06.C2.C3450, MWH06.C2.C3135, MWH06.D6.C2.C3160, MWH06.D6.C2.C3170, MWH06.D6.C2.C3180, MWH06-10273, MWH06-10341, MWH06-10531, MWH06-10530, MWH06-10547, MWH06-10612 FF | 80% | 2d | 2021-09-07 | 2021-09-17 | -47d | 0d | 2021-09-01 | VECA Electric [1200 h] | 1825 | 0 | 1 |  | 2 | 4 | 2 | 3 | 6 | 2 | 6 | 11 |  |  |  | 1 |  |
| MWH06-10046 |  | Control Power Available | 10d | 2021-08-31 | 2021-09-13 | MWH06.C2.Cx2050 FF+6d, MWH06-10531, MWH06-10530, MWH06-10605 |  |  |  |  | -49d | 0d |  | VECA Electric | 1825 | 0 | 1 |  | 2 | 4 | 2 | 3 | 6 | 2 | 6 | 11 |  |  |  |  |  |
| MWH06.C2.Cx2100 |  | Network Startup | 10d | 2021-08-31 | 2021-09-13 | MWH06.C2.C3330, MWH-06-02-L2CX-S, MWH06-10530 |  |  |  |  | -35d | 0d |  | LINX [600 h] | 1824 |  | 1 |  | 2 | 7 | 2 | 3 | 6 |  | 6 | 11 |  |  |  |  | 27 |
| MWH06-10047 |  | Power available for Start up | 4d | 2021-09-14 | 2021-09-17 | MWH06-10046, MWH06-10531, MWH06-10530, MWH06-10202 |  |  |  |  | -49d | 0d |  | VECA Electric | 1825 | 0 | 1 |  | 2 | 4 | 2 | 3 | 6 | 2 | 6 | 11 |  |  |  |  |  |
| MWH06.C2.Cx2160 |  | EPMS Checkout / Point to Point | 10d | 2021-09-14 | 2021-09-24 | MWH06.C2.Cx2100, MWH06-10530 |  |  |  |  | -25d | 10d |  | LINX [1200 h] | 21 |  | 1 |  | 2 | 7 | 2 | 3 | 6 |  | 6 | 11 |  |  |  |  |  |
| MWH06.C2.Cx2170 |  | OFCI Lvl 3 Testing & Start up (Electrical Equipment) | 16d | 2021-09-18 | 2021-10-07 | MWH06-10200, MWH06.C2.Cx2050, MWH06-10047, MWH06-10531, MWH06-10530 |  |  |  |  | -49d | 0d |  | VECA Electric [2000 h] | 1826 | 0 | 3 |  | 2 | 4 | 2 | 3 | 6 | 2 | 6 | 11 |  |  |  |  |  |
| MWH06.C2.Cx2190 |  | OFCI Lvl 3 Testing & Start up (Mechanical Equipment) | 12d | 2021-09-22 | 2021-10-06 | MWH06.C2.Cx2100 SS+6d, MWH06-10047, MWH06-10201, MWH06.D3.C2.C3040, MWH06-10530 |  |  |  |  | -46d | 0d |  | TCM Mechanical [640 h] | 171 |  | 3 |  | 2 | 51 | 2 | 3 | 6 |  | 6 | 11 |  |  |  |  |  |
|  | 3 | **Cell 2** |  | 2021-05-12 | 2021-10-07 |  |  |  |  |  |  |  |  |  |  |  |  |  |  |  |  |  |  |  |  |  |  |  |  |  |  |
| MWH06-10205 |  | UPM Yellow tagging - COLO-2 CELL-2 | 0d | 2021-05-12 A | 2021-08-11 A | MWH06-10381, MWH06.C2.C2420, MWH06.S.1530, MWH06-10290, MWH06-10531, MWH06-10530 | 100% |  | 2021-05-12 | 2021-05-12 |  |  |  | VECA Electric | 1829 | 0 | 1 |  | 2 | 4 | 2 | 2 | 6 | 2 | 6 | 11 |  |  |  |  |  |
| MWH06-10204 |  | Mechanical Equipment Yellow Tag | 10d | 2021-07-01 A | 2021-09-21 | MWH06-10476, MWH06.C2.C2180, MWH06.C2.C2410, MWH06.C2.C2420, MWH06.D3.C2.C2040, MWH06-10531, MWH06-10530 |  | 17d | 2021-07-31 | 2021-08-11 | -46d | 0d | 2021-08-20 | VECA Electric | 1829 | 0 | 1 |  | 2 | 4 | 2 | 2 | 6 | 2 | 6 | 11 |  |  |  |  |  |
| MWH06.C2.Cx2000 |  | Electrical Equipment Yellow Tagging (Field Terminated equipment) | 10d | 2021-07-26 A | 2021-09-01 | MWH06-10203 FF, MWH06-10514, MWH06-10497, MWH06.S.1530, MWH06.C2.C2250 FF, MWH06.C2.C2380, MWH06.C2.C2350, MWH06.C2.C2420, MWH06.C2.C2460, MWH06.C2.C2135, MWH06.D6.C2.C2170, MWH06.D6.C2.C2160, MWH06.D6.C2.C2180, MWH06-10273, MWH06-10342, MWH06-10531, MWH06-10530, MWH06-10545, MWH06-10611 FF | 80% | 2d | 2021-07-13 | 2021-07-23 | -47d | 0d | 2021-09-01 | VECA Electric [1200 h] | 1829 | 0 | 1 |  | 2 | 4 | 2 | 2 | 6 | 2 | 6 | 11 |  |  |  | 1 |  |
| MWH06-10342 |  | NETA test validation Inpections- VECA-EPS-RTS COLO-2 Cell-2 | 3d | 2021-07-27 A | 2021-07-29 A | MWH06.C2.C2380 FF, MWH06-10273 FF, MWH06-10531, MWH06-10530 | 100% |  | 2021-07-31 | 2021-08-03 |  |  |  | VECA Electric | 797 |  | 2 |  | 2 |  |  | 2 | 6 |  | 6 | 11 | 3-1 | 1 | 1 |  |  |
| MWH06-10203 |  | SE- Completed L2 QC Checklist | 10d | 2021-07-30 A | 2021-08-02 A | MWH06-10590 FF+2d, MWH06-10588 FF, MWH06-10445, MWH06.D6.C2.C2180 FF, MWH06-10514 FF, MWH06-9936, MWH06-10320, MWH06-10531, MWH06-10530 | 100% |  | 2021-06-30 | 2021-07-13 |  |  |  | VECA Electric | 1829 | 0 | 1 | SE | 2 | 4 | 2 | 2 | 6 | 2 | 6 | 11 |  |  |  |  |  |
| MWH06-10048 |  | Control Power Available | 10d | 2021-08-31 | 2021-09-13 | MWH06.C2.Cx2000 FF+6d, MWH06-10531, MWH06-10530, MWH06-10604 |  |  |  |  | -49d | 0d |  | VECA Electric | 1829 | 0 | 1 |  | 2 | 4 | 2 | 2 | 6 | 2 | 6 | 11 |  |  |  |  |  |
| MWH06.C2.Cx2020 |  | Network Startup | 10d | 2021-08-31 | 2021-09-13 | MWH06.C2.C2350, MWH-06-02-L2CX-S, MWH06-10530 |  |  |  |  | -35d | 0d |  | LINX [600 h] | 1828 |  | 1 |  | 2 | 7 | 2 | 2 | 6 |  | 6 | 11 |  |  |  |  | 27 |
| MWH06-10049 |  | Power available for Start up | 4d | 2021-09-14 | 2021-09-17 | MWH06-10048, MWH06-10531, MWH06-10530, MWH06-10205 |  |  |  |  | -49d | 0d |  | VECA Electric | 1829 | 0 | 1 |  | 2 | 4 | 2 | 2 | 6 | 2 | 6 | 11 |  |  |  |  |  |
| MWH06.C2.Cx2060 |  | EPMS Checkout / Point to Point | 10d | 2021-09-14 | 2021-09-24 | MWH06.C2.Cx2020, MWH06-10530 |  |  |  |  | -35d | 0d |  | LINX [1200 h] | 24 |  | 1 |  | 2 | 7 | 2 | 2 | 6 |  | 6 | 11 |  |  |  |  |  |
| MWH06.C2.Cx2080 |  | OFCI Lvl 3 Testing & Start up (Electrical Equipment) | 16d | 2021-09-18 | 2021-10-07 | MWH06-10203, MWH06.C2.Cx2000, MWH06-10049, MWH06-10531, MWH06-10530 |  |  |  |  | -49d | 0d |  | VECA Electric [2000 h] | 1830 | 0 | 3 |  | 2 | 4 | 2 | 2 | 6 | 2 | 6 | 11 |  |  |  |  |  |
| MWH06.C2.Cx2120 |  | OFCI Lvl 3 Testing & Start up (Mechanical Equipment) | 12d | 2021-09-22 | 2021-10-06 | MWH06.C2.Cx2020 SS+6d, MWH06-10049, MWH06-10204, MWH06.D3.C2.C2040, MWH06-10530 |  |  |  |  | -46d | 0d |  | TCM Mechanical [640 h] | 170 |  | 3 |  | 2 | 51 | 2 | 2 | 6 |  | 6 | 11 |  |  |  |  |  |

| ID | WBS | Activity | Duration | Start | Finish | Predecessors | Complete | Remaining | Planned start | Planned finish | Total float | Free float | Calendar | Resources | MSP Activity ID | VECA % Complete | HRA - Safety Level | SE activities | COLO | TRADE | MSFT-Funding Releases | CELL | WBS | Critical Path mer to COLO | HRA - Required Permit- Priority-1 | HRA - Required Permit- Priority-2 | COLO CRITICAL | VECA- Changed | MV CREW | HOT ITEMS | Critical Path-2 | MWH06- TRADES |
| --- | --- | --- | --- | --- | --- | --- | --- | --- | --- | --- | --- | --- | --- | --- | --- | --- | --- | --- | --- | --- | --- | --- | --- | --- | --- | --- | --- | --- | --- | --- | --- | --- |
|  | 4 | **Cell 4** |  | 2021-06-28 | 2021-10-07 |  |  |  |  |  |  |  |  |  |  |  |  |  |  |  |  |  |  |  |  |  |  |  |  |  |  |  |
| MWH06-10206 |  | SE- Completed L2 QC Checklist | 10d | 2021-06-28 A | 2021-08-02 A | MWH06-10589, MWH06-10447, MWH06.D6.C2.C4180 FF, MWH06-10516 FF, MWH06-9938, MWH06-10322, MWH06-10428, MWH06-10531, MWH06-10530 | 100% |  | 2021-07-14 | 2021-07-26 |  |  |  | VECA Electric | 1833 | 0 | 1 | SE | 2 | 4 | 2 | 4 | 6 | 2 | 6 | 11 |  |  |  |  |  |  |
| MWH06-10207 |  | Mechanical Equipment Yellow Tag | 10d | 2021-07-01 A | 2021-09-13 | MWH06-10476, MWH06.C2.C4380, MWH06.C2.C4370, MWH06-10531, MWH06-10530 |  | 10d | 2021-07-31 | 2021-08-11 | -39d | 0d |  | VECA Electric | 1833 | 0 | 1 |  | 2 | 4 | 2 | 4 | 6 | 2 | 6 | 11 |  |  |  |  |  |  |
| MWH06.C2.Cx2030 |  | Electrical Equipment Yellow Tagging (Field Terminated equipment) | 10d | 2021-07-26 A | 2021-09-01 | MWH06-10206 FF, MWH06.C2.Cx2000 FF, MWH06-10516, MWH06-10499, MWH06-2678, MWH06.C2.C4270 FF, MWH06.C2.C4320, MWH06.C2.C4290, MWH06.C2.C4370, MWH06.C2.C4390, MWH06.C2.C4380, MWH06.C2.C4040, MWH06.C2.C4050, MWH06-2527, MWH06.C2.C4120, MWH06.C2.C4135, MWH06.D6.C2.C4160, MWH06.D6.C2.C4170, MWH06.D6.C2.C4180, MWH06-10273, MWH06-10343, MWH06-10531, MWH06-10530, MWH06-10548, MWH06-10613 FF | 80% | 2d | 2021-08-18 | 2021-08-28 | -47d | 0d |  | VECA Electric [1200 h] | 1833 | 0 | 1 |  | 2 | 4 | 2 | 4 | 6 | 2 | 6 | 11 | 2,3,4 | 1 |  |  |  |  |
| MWH06-10343 |  | NETA test validation Inpections- VECA-EPS-RTS COLO-2 Cell-4 | 3d | 2021-07-27 A | 2021-07-29 A | MWH06.C2.C4320 FF, MWH06-10273 FF, MWH06-10531, MWH06-10530 | 100% |  | 2021-07-31 | 2021-08-03 |  |  |  | VECA Electric | 797 |  | 2 |  | 2 |  |  | 4 | 6 |  | 6 | 11 |  |  | 3-1 | 1 | 1 |  |
| MWH06-10208 |  | UPM Yellow tagging -COLO-2 CELL-4 | 10d | 2021-07-30 A | 2021-08-11 A | MWH06-10381, MWH06.C2.C4370, MWH06-2678, MWH06-10531, MWH06-10530 | 100% |  | 2021-06-30 | 2021-07-13 |  |  |  | VECA Electric | 1833 | 0 | 1 |  | 2 | 4 | 2 | 4 | 6 | 2 | 6 | 11 |  |  |  |  |  |  |
| MWH06-10050 |  | Control Power Available | 10d | 2021-08-31 | 2021-09-13 | MWH06.C2.Cx2030 FF+6d, MWH06-10531, MWH06-10530, MWH06-10606 |  |  |  |  | -49d | 0d |  | VECA Electric | 1833 | 0 | 1 |  | 2 | 4 | 2 | 4 | 6 | 2 | 6 | 11 | 2,3,4 |  |  |  |  |  |
| MWH06.C2.Cx2070 |  | Network Startup | 10d | 2021-08-31 | 2021-09-13 | MWH06.C2.C4290, MWH-06-02-L2CX-S, MWH06-10530 |  |  |  |  | -35d | 0d |  | LINX [600 h] | 1832 |  | 1 |  | 2 | 7 | 2 | 4 | 6 |  | 6 | 11 |  |  |  |  |  | 27 |
| MWH06-10051 |  | Power available for Start up | 4d | 2021-09-14 | 2021-09-17 | MWH06-10050, MWH06-10531, MWH06-10530, MWH06-10208 |  |  |  |  | -49d | 0d |  | VECA Electric | 1833 | 0 | 1 |  | 2 | 4 | 2 | 4 | 6 | 2 | 6 | 11 | 2,3,4 |  |  |  |  |  |
| MWH06.C2.Cx2150 |  | OFCI Lvl 3 Testing & Start up (Electrical Equipment) | 16d | 2021-09-18 | 2021-10-07 | MWH06-10206, MWH06.C2.Cx2030, MWH06-10051, MWH06-10531, MWH06-10530 |  |  |  |  | -49d | 0d |  | VECA Electric [2000 h] | 1835 | 0 | 3 |  | 2 | 4 | 2 | 4 | 6 | 2 | 6 | 11 | 2,3,4 |  |  |  |  |  |
| MWH06.C2.Cx2180 |  | OFCI Lvl 3 Testing & Start up (Mechanical Equipment) | 12d | 2021-09-18 | 2021-10-02 | MWH06.C2.Cx2070 SS+6d, MWH06-10051, MWH06-10207, MWH06-10530 |  |  |  |  | -43d | 3d |  | TCM Mechanical [640 h] | 168 |  | 3 |  | 2 | 51 | 2 | 4 | 6 |  | 6 | 11 |  |  |  |  |  |  |
| MWH06.C2.Cx2140 |  | EPMS Checkout / Point to Point | 10d | 2021-09-27 | 2021-10-07 | MWH06.C2.Cx2070, MWH06.C2.Cx2060, MWH06-10530 |  |  |  |  | -35d | 0d |  | LINX [1200 h] | 1834 |  | 1 |  | 2 | 7 | 2 | 4 | 6 |  | 6 | 11 |  |  |  |  |  |  |
|  | 1 | **L3** |  | 2021-09-18 | 2021-12-04 |  |  |  |  |  |  |  |  |  |  |  |  |  |  |  |  |  |  |  |  |  |  |  |  |  |  |  |
| MWH06-10068 |  | GEN SCR testing and Burnins | 15d | 2021-09-18 | 2021-10-06 | MWH06-10051, MWH06.C2.Cx2010, MWH06.C2.Cx2050, MWH06.C2.Cx2000, MWH06.C2.Cx2030, MWH06-10282, MWH06-10290, MWH06-10530 |  |  |  |  | -34d | 15d |  | TCM Mechanical | 1840 |  | 2 |  | 2 | 51 | 2 | Cx-3 | 7 | 2 | 6 | 11 |  |  |  |  |  |  |
| MWH06.C2.Cx3000 |  | Hydronic Pipe Flush (Open and closed Loop) | 12d | 2021-09-27 | 2021-10-09 | MWH-06-02-MEP-F, MWH06.C2.Cx2110 FF+2d, MWH06.C2.Cx2170 FF+2d, MWH06.C2.Cx2080 FF+2d, MWH06.C2.Cx2150 FF+2d, MWH06.C1.Cx3000, MWH-06-02-MER-F, MWH06-10530 |  |  |  |  | -49d | 0d |  | TCM Mechanical [1200 h] | 1840 |  | 2 |  | 2 | 51 | 2 | Cx-3 | 7 | 2 | 6 | 11 | 2,3,4 |  |  |  |  |  |
| MWH06.C2.Cx3020 |  | BAS Prefunctional Testing on Construction Server | 20d | 2021-10-07 | 2021-10-30 | MWH-06-01-BAS-F, MWH06.C2.Cx2130, MWH06.C2.Cx2190, MWH06.C2.Cx2120, MWH06.C2.Cx2180, MWH06.C1.Cx3020, MWH06.C2.C1150, MWH06.C2.C3140, MWH06.C2.C2130, MWH06.C2.C4120, MWH06-C2.P2000, MWH06-10530 |  |  |  |  | -36d | 0d |  | LINX [2000 h] | 1837 |  | 1 |  | 2 | 7 | 2 | Cx-3 | 7 |  | 6 | 11 |  |  |  |  |  |  |
| MWH06.C2.Cx3010 |  | Cooling Automation | 12d | 2021-10-11 | 2021-10-25 | MWH06.C2.Cx2110, MWH06.C2.Cx3000, MWH06.C2.Cx2130, MWH06.C2.Cx2170, MWH06.C2.Cx2190, MWH06.C2.Cx2080, MWH06.C2.Cx2120, MWH06.C2.Cx2150, MWH06.C2.Cx2180, MWH06.C1.Cx3010, MWH06-10530 |  |  |  |  | -49d | 0d |  | TCM Mechanical [1200 h] | 1839 |  | 1 |  | 2 | 51 | 2 | Cx-3 | 7 | 2 | 6 | 11 | 2,3,4 |  |  |  |  |  |
| MWH06.C2.Cx3030 |  | Load Bank & IR Scan | 18d | 2021-10-26 | 2021-11-16 | MWH-06-02-POW-F, MWH06.C2.Cx2140, MWH06.C2.Cx2060, MWH06.C2.Cx2160, MWH06.C2.Cx2090, MWH06.C2.C3150, MWH06.C2.Cx3010, MWH06.C1.Cx3030 FS+15d, MWH06.C2.C4040, MWH06.C2.C4050, MWH06-2527, MWH-06-02-EPM-F, MWH-06-02-L2CX-F, MWH-06-02-GEN-F, MWH-06-02-UPW-F, MWH06-10068, MWH06-10531, MWH06-10530 |  |  |  |  | -49d | 0d |  | VECA Electric [3600 h] | 1838 | 0 | 3 |  | 2 | 4 | 2 | Cx-3 | 7 | 2 | 6 | 4 | 2,3,4 |  |  | A | 1 |  |
| MWH06.C2.Cx3040 |  | Level 3 Cx- COLO-2 | 12d | 2021-11-17 | 2021-12-03 | MWH06-10592, MWH06.C2.Cx3030, MWH06.C2.Cx2060, MWH06.C2.Cx2160, MWH06.C2.Cx2090, MWH06.C2.C3150, MWH06.C2.Cx3020 FF+10d, MWH-06-02-BAS-F, MWH06.C2.C1450, MWH06.C2.C3440, MWH06.C2.C2430, MWH06.C2.C4400, MWH06.C2.C1320, MWH06.C2.C3300, MWH06.C2.C2320, MWH06.C2.C4260, MWH06.C2.C1400, MWH06.C2.C3370, MWH06.C2.C2390, MWH06.C2.C4330, MWH06-10531, MWH06-10530 |  |  |  |  | -49d | 0d |  | VECA Electric [1200 h] | 19 | 0 |  |  | 2 | 4 | 2 | Cx-3 | 7 | 2 |  | 11 |  |  |  | A | 1 |  |
| MWH06.C2.Cx3050 |  | Weather (5 Days) - 0 remaining Check Delay #14 for updates | 0d | 2021-12-04 | 2021-12-04 | MWH-06-02-FIR-F, MWH-06-02-EPMS-F, MWH06.C2.Cx3040, MWH06-10146, MWH06-9915, MWH06-9914, MWH06-10530 |  |  |  |  | -49d | 0d |  |  | 23 |  |  |  | 2 |  | 2 | Cx-3 | 7 | 2 |  |  |  |  |  |  |  |  |
|  | 5 | **L4 & L5 - IST** |  | 2021-12-04 | 2022-01-21 |  |  |  |  |  |  |  |  |  |  |  |  |  |  |  |  |  |  |  |  |  |  |  |  |  |  |  |
| MWH06.C2.Cx4030 |  | MST Ready for Network Install | 5d | 2021-12-04 | 2021-12-09 | MWH.06.M2010, MWH06-10531, MWH06-10530 |  |  |  |  | -37d | 0d |  | VECA Electric [2240 h] | 44 | 0 |  |  | 2 | 4 | 2 | Cx-4 |  |  |  |  |  |  |  |  |  |  |
| MWH06.C2.Cx4010 |  | COLO 2 Level 4 & Level 5 IST | 21d | 2021-12-04 | 2021-12-24 | MWH-06-02-FIR-F, MWH-06-02-EPMS-F, MWH06.C2.C4420, MWH06.C2.C2450, MWH06.C2.C3460, MWH06.C2.C1440, MWH06.C1.C3460, MWH06.C1.C2440, MWH06.C1.C4460, MWH06.C2.Cx3040, MWH.06.M2010, MWH06-10531, MWH06-10530 |  |  |  |  | -63d | 2d | 7-8s wo/Holidays Clayco | VECA Electric [2240 h] | 173 | 0 | 2 |  | 2 | 4 | 2 | Cx-4 |  |  | 6 | 11 |  |  |  |  |  |  |
| MWH06.C2.Cx4000 |  | Security Commissioning (level2 with Corp net after IST) | 10d | 2021-12-27 | 2022-01-10 | MWH06.C2.Cx4010, MWH-06-02-FIR-F, MWH-06-02-EPMS-F, MWH06.C2.Cx3040, MWH06-10530 |  |  |  |  | -42d | 0d |  |  | 166 |  | 1 |  | 2 |  |  | Cx-4 |  |  | 6 | 11 |  |  |  |  |  |  |
| MWH06.C2.Cx4020 |  | Punch List COLO-2 | 14d | 2021-12-27 | 2022-01-09 | MWH-06-02-RNI-F, MWH-06-02-L5CX-F, MWH-06-02-L4CX-F, MWH06.C2.Cx4010, MWH06-C2.P2100, MWH06-10531, MWH06-10530 |  |  |  |  | -65d | 0d | 7-8s wo/Holidays Clayco | VECA Electric [2240 h] | 44 | 0 | 1 |  | 2 | 4 | 2 | Cx-4 |  |  | 6 | 11 |  |  |  |  |  |  |
| MWH06.C2.Cx4050 |  | Final Clean/ ready for lock down | 12d | 2022-01-10 | 2022-01-21 | MWH06-10600, MWH-06-02-SC-F, MWH06.C2.Cx4020, MWH06-10531, MWH06-10530 |  |  |  |  | -65d | 0d | 7-8s wo/Holidays Clayco | VECA Electric [2240 h] | 44 | 0 | 1 |  | 2 | 4 | 2 | Cx-4 |  |  | 6 | 11 |  |  |  |  |  |  |
| MWH06.C2.Cx4001 |  | Security Commissioning (level3 DCPS) | 5d | 2022-01-11 | 2022-01-15 | MWH06.C2.Cx4000, MWH06.C2.Cx4010, MWH-06-02-FIR-F, MWH-06-02-EPMS-F, MWH06.C2.Cx3040, MWH06-10530 |  |  |  |  | -42d | 0d |  |  | 166 |  | 1 |  | 2 |  |  | Cx-4 |  |  | 6 | 11 |  |  |  |  |  |  |

Notes:
- MWH06.C2.Cx3030: VECA Update Notes: Incentive is based on 15 day durration from start to complete paperwork

| ID | WBS | Activity | Duration | Start | Finish | Predecessors | Complete | Remaining | Planned start | Planned finish | Total float | Free float | Constraint | Resources | MSP Activity ID | HRA - Safety Level | MV CREW | COLO | HOT ITEMS | CELL | Critical Path-2 | WBS | HRA - Required Permit- Priority-1 | HRA - Required Permit- Priority-2 | VECA % Complete | SE activities | TRADE | MSFT-Funding Releases | Critical Path mer to COLO | MWH06- TRADES | VECA- Changed |
| --- | --- | --- | --- | --- | --- | --- | --- | --- | --- | --- | --- | --- | --- | --- | --- | --- | --- | --- | --- | --- | --- | --- | --- | --- | --- | --- | --- | --- | --- | --- | --- |
|  | 1 | **COLO-3 Cx** |  | 2021-07-31 | 2022-03-06 |  |  |  |  |  |  |  |  |  |  |  |  |  |  |  |  |  |  |  |  |  |  |  |  |  |  |
|  | 7 | **L2** |  | 2021-07-31 | 2021-10-30 |  |  |  |  |  |  |  |  |  |  |  |  |  |  |  |  |  |  |  |  |  |  |  |  |  |  |
|  | 1 | **Cell 1** |  | 2021-07-31 | 2021-10-19 |  |  |  |  |  |  |  |  |  |  |  |  |  |  |  |  |  |  |  |  |  |  |  |  |  |  |
| MWH06-10344 |  | NETA test validation Inpections- VECA-EPS-RTS COLO-3 Cell-1 | 3d | 2021-07-31 A | 2021-08-03 A | MWH06.C3.C1430 FF, MWH06-10273 FF, MWH06-10531, MWH06-10530 | 100% |  | 2021-08-31 | 2021-09-02 |  |  | start on or after 2021-08-09 | VECA Electric | 797 | 2 | 3-1 | 3 | 1 | 1 | 1 | 6 | 6 | 11 |  |  |  |  |  |  |  |
| MWH06-10209 |  | SE- Completed L2 QC Checklist | 10d | 2021-08-06 A | 2021-09-13 | MWH06-10549, MWH06-10500, MWH06-9931, MWH06-10197, MWH06-10462, MWH06.D6.C3.C1140 FF, MWH06-10517 FF, MWH06-9939, MWH06-10323, MWH06-10531, MWH06-10530, MWH06-10614 |  | 10d | 2021-08-31 | 2021-09-13 | -31d | 0d |  | VECA Electric | 195 | 1 |  | 3 |  | 1 |  | 6 | 6 | 11 | 0 | SE | 4 | 2 | 3 |  |  |
| MWH06-10211 |  | UPM Yellow tagging -COLO-3 CELL-1 | 10d | 2021-08-31 | 2021-09-13 | MWH06.C3.C1380, MWH06.S.1610, MWH06-10531, MWH06-10530 |  |  |  |  | -15d | 6d |  | VECA Electric | 195 | 1 |  | 3 |  | 1 |  | 6 | 6 | 11 | 0 |  | 4 | 2 | 3 |  |  |
| MWH06.C3.Cx2000 |  | Electrical Equipment Yellow Tagging (Field Terminated equipment) | 10d | 2021-08-31 | 2021-09-13 | MWH06-10209 FF, MWH06-10517, MWH06-10500, MWH06.S.1610, MWH06.C3.C1180 FF, MWH06.C3.C1430, MWH06.C3.C1410, MWH06.C3.C1380, MWH06.C3.C1420, MWH06.C3.C1135, MWH06.D6.C3.C1180, MWH06.D6.C3.C1170, MWH06.D6.C3.C1140, MWH06-10344, MWH06-10531, MWH06-10530, MWH06-10549 |  |  |  |  | -31d | 0d |  | VECA Electric [1200 h] | 195 | 1 |  | 3 |  | 1 |  | 6 | 6 | 11 | 0 |  | 4 | 2 | 3 |  |  |
| MWH06-10052 |  | Control Power Available | 10d | 2021-09-09 | 2021-09-20 | MWH06.C3.Cx2000 FF+6d, MWH06-10531, MWH06-10530 |  |  |  |  | -21d | 0d |  | VECA Electric | 195 | 1 |  | 3 |  | 1 |  | 6 | 6 | 11 | 0 |  | 4 | 2 | 3 |  |  |
| MWH06.C3.Cx2020 |  | Network Startup | 10d | 2021-09-14 | 2021-09-24 | MWH06.C3.C1410, MWH06.C3.Cx2000, MWH-06-03-L2CX-S, MWH06-10530 |  |  |  |  | -25d | 0d |  | LINX [600 h] | 1845 | 1 |  | 3 |  | 1 |  | 6 | 6 | 11 |  |  | 7 | 2 |  | 27 |  |
| MWH06-10053 |  | Power available for Start up | 4d | 2021-09-21 | 2021-09-24 | MWH06-10052, MWH06-10531, MWH06-10530, MWH06-10211 |  |  |  |  | -21d | 0d |  | VECA Electric | 195 | 1 |  | 3 |  | 1 |  | 6 | 6 | 11 | 0 |  | 4 | 2 | 3 |  |  |
| MWH06-10210 |  | Mechanical Equipment Yellow Tag | 10d | 2021-09-22 | 2021-10-04 | MWH06-10477, MWH06.C3.C1170, MWH06.C3.C1360, MWH06.C3.C1380, MWH06.D3.C3.C1040, MWH06.D3.C3.C1040 FF, MWH06-10531, MWH06-10530, MWH06-10201 |  |  |  |  | -32d | 0d |  | VECA Electric | 195 | 1 |  | 3 |  | 1 |  | 6 | 6 | 11 | 0 |  | 4 | 2 | 3 |  |  |
| MWH06.C3.Cx2060 |  | EPMS Checkout / Point to Point | 10d | 2021-09-27 | 2021-10-07 | MWH06.C3.Cx2020, MWH06-10530 |  |  |  |  | -11d | 0d |  | LINX [1200 h] | 34 | 1 |  | 3 |  | 1 |  | 6 | 6 | 11 |  |  | 7 | 2 |  |  |  |
| MWH06.C3.Cx2070 |  | OFCI Lvl 3 Testing & Start up (Electrical Equipment) | 16d | 2021-09-27 | 2021-10-14 | MWH06-10209, MWH06.C3.Cx2000, MWH06-10053, MWH06-10531, MWH06-10530 |  |  |  |  | -21d | 10d |  | VECA Electric [2000 h] | 1846 | 3 |  | 3 |  | 1 |  | 6 | 6 | 11 | 0 |  | 4 | 2 | 3 |  |  |
| MWH06.C3.Cx2110 |  | OFCI Lvl 3 Testing & Start up (Mechanical Equipment) | 12d | 2021-10-05 | 2021-10-19 | MWH06.C3.Cx2020, MWH06-10053, MWH06-10210, MWH06-10530 |  |  |  |  | -22d | 10d |  | TCM Mechanical [640 h] | 228 | 3 |  | 3 |  | 1 |  | 6 | 6 | 11 |  |  | 51 | 2 |  |  |  |
|  | 2 | **Cell 3** |  | 2021-08-24 | 2021-10-30 |  |  |  |  |  |  |  |  |  |  |  |  |  |  |  |  |  |  |  |  |  |  |  |  |  |  |
| MWH06-10345 |  | NETA test validation Inpections- VECA-EPS-RTS COLO-3 Cell-3 | 3d | 2021-08-24 A | 2021-08-26 A | MWH06.C3.C3390 FF, MWH06-10273 FF, MWH06-10531, MWH06-10530 | 100% |  | 2021-08-31 | 2021-09-02 |  |  |  | VECA Electric | 797 | 2 | 3-1 | 3 | 1 | 3 | 1 | 6 | 6 | 11 |  |  |  |  |  |  |  |
| MWH06-10214 |  | UPM Yellow tagging -COLO-3 CELL-3 | 10d | 2021-08-31 | 2021-09-13 | MWH06.C3.C3330, MWH06-2683, MWH06-10531, MWH06-10530 |  |  |  |  | -15d | 16d |  | VECA Electric | 1849 | 1 |  | 3 |  | 3 |  | 6 | 6 | 11 | 0 |  | 4 | 2 | 3 |  |  |
| MWH06-10212 |  | SE- Completed L2 QC Checklist | 10d | 2021-09-07 | 2021-09-17 | MWH06-10551, MWH06-10464, MWH06.D6.C3.C3180 FF, MWH06-10519, MWH06-9941, MWH06-10325 FF, MWH06-10531, MWH06-10530, MWH06-10614 |  |  |  |  | -25d | 6d |  | VECA Electric | 1849 | 1 |  | 3 |  | 3 |  | 6 | 6 | 11 | 0 | SE | 4 | 2 | 3 |  |  |
| MWH06.C3.Cx2030 |  | Electrical Equipment Yellow Tagging (Field Terminated equipment) | 10d | 2021-09-14 | 2021-09-24 | MWH06-10212 FF, MWH06.C3.Cx2000 FF, MWH06-10519, MWH06-10502, MWH06-2683, MWH06.C3.C3150 FF, MWH06.C3.C3390, MWH06.C3.C3360, MWH06.C3.C3330, MWH06.C3.C3380, MWH06.C3.Cx2000, MWH06-C3.P1800, MWH06.C3.C3050 SS, MWH06.C3.C3000, MWH06-2527, MWH06.C3.C3135, MWH06.D6.C3.C3150, MWH06.D6.C3.C3170, MWH06.D6.C3.C3180, MWH06-10345, MWH06-10531, MWH06-10530, MWH06-10551 |  |  |  |  | -31d | 0d |  | VECA Electric [1200 h] | 1849 | 1 |  | 3 |  | 3 |  | 6 | 6 | 11 | 0 |  | 4 | 2 | 3 |  | 1 |
| MWH06-10054 |  | Control Power Available | 10d | 2021-09-21 | 2021-10-02 | MWH06.C3.Cx2030 FF+6d, MWH06-10531, MWH06-10530 |  |  |  |  | -31d | 0d |  | VECA Electric | 1849 | 1 |  | 3 |  | 3 |  | 6 | 6 | 11 | 0 |  | 4 | 2 | 3 |  |  |
| MWH06.C3.Cx2080 |  | Network Startup | 10d | 2021-09-27 | 2021-10-07 | MWH06.C3.C3360, MWH06.C3.Cx2030, MWH06.C3.Cx2020, MWH-06-03-L2CX-S, MWH06-10530 |  |  |  |  | -25d | 0d |  | LINX [600 h] | 1848 | 1 |  | 3 |  | 3 |  | 6 | 6 | 11 |  |  | 7 | 2 |  | 27 |  |
| MWH06-10055 |  | Power available for Start up | 4d | 2021-10-04 | 2021-10-07 | MWH06-10054, MWH06-10531, MWH06-10530, MWH06-10214 |  |  |  |  | -31d | 0d |  | VECA Electric | 1849 | 1 |  | 3 |  | 3 |  | 6 | 6 | 11 | 0 |  | 4 | 2 | 3 |  |  |
| MWH06-10213 |  | Mechanical Equipment Yellow Tag | 10d | 2021-10-05 | 2021-10-15 | MWH06-10477, MWH06.C3.C3350, MWH06.C3.C3330, MWH06-10531, MWH06-10530, MWH06-10210 |  |  |  |  | -32d | 0d |  | VECA Electric | 1849 | 1 |  | 3 |  | 3 |  | 6 | 6 | 11 | 0 |  | 4 | 2 | 3 |  |  |
| MWH06.C3.Cx2140 |  | EPMS Checkout / Point to Point | 10d | 2021-10-08 | 2021-10-20 | MWH06.C3.Cx2080, MWH06.C3.Cx2060, MWH06-10530 |  |  |  |  | -11d | 6d |  | LINX [1200 h] | 33 | 1 |  | 3 |  | 3 |  | 6 | 6 | 11 |  |  | 7 | 2 |  |  |  |
| MWH06.C3.Cx2160 |  | OFCI Lvl 3 Testing & Start up (Electrical Equipment) | 16d | 2021-10-08 | 2021-10-27 | MWH06-10212, MWH06.C3.Cx2030, MWH06-10055, MWH06-10531, MWH06-10530 |  |  |  |  | -31d | 0d |  | VECA Electric [2000 h] | 1850 | 3 |  | 3 |  | 3 |  | 6 | 6 | 11 | 0 |  | 4 | 2 | 3 |  |  |
| MWH06.C3.Cx2180 |  | OFCI Lvl 3 Testing & Start up (Mechanical Equipment) | 12d | 2021-10-18 | 2021-10-30 | MWH06.C3.Cx2080, MWH06-10055, MWH06-10213, MWH06-10530 |  |  |  |  | -32d | 0d |  | TCM Mechanical [640 h] | 225 | 3 |  | 3 |  | 3 |  | 6 | 6 | 11 |  |  | 51 | 2 |  |  |  |

| ID | WBS | Activity | Duration | Start | Finish | Predecessors | Complete | Remaining | Planned start | Planned finish | Total float | Free float | Resources | MSP Activity ID | HRA - Safety Level | MV CREW | COLO | HOT ITEMS | CELL | Critical Path-2 | WBS | HRA - Required Permit- Priority-1 | HRA - Required Permit- Priority-2 | VECA % Complete | SE activities | TRADE | MSFT-Funding Releases | Critical Path mer to COLO | VECA- Changed | MWH06- TRADES |
| --- | --- | --- | --- | --- | --- | --- | --- | --- | --- | --- | --- | --- | --- | --- | --- | --- | --- | --- | --- | --- | --- | --- | --- | --- | --- | --- | --- | --- | --- | --- |
|  | 3 | **Cell 2** |  | 2021-07-31 | 2021-10-14 |  |  |  |  |  |  |  |  |  |  |  |  |  |  |  |  |  |  |  |  |  |  |  |  |  |
| MWH06-10346 |  | NETA test validation Inpections- VECA-EPS-RTS COLO-3 Cell-2 | 3d | 2021-07-31 A | 2021-08-03 A | MWH06.C3.C2420 FF, MWH06-10273 FF, MWH06-10531, MWH06-10530 | 100% |  | 2021-08-31 | 2021-09-02 |  |  | VECA Electric | 797 | 2 | 3-1 | 3 | 1 | 2 | 1 | 6 | 6 | 11 |  |  |  |  |  |  |  |
| MWH06-10215 |  | SE- Completed L2 QC Checklist | 10d | 2021-08-10 A | 2021-09-13 | MWH06-10550, MWH06-10463, MWH06.D6.C3.C2180 FF, MWH06-10518 FF, MWH06-9940, MWH06-10324, MWH06-10531, MWH06-10530, MWH06-10614 |  | 10d | 2021-08-31 | 2021-09-13 | -31d | 0d | VECA Electric | 1853 | 1 |  | 3 |  | 2 |  | 6 | 6 | 11 | 0 | SE | 4 | 2 | 3 |  |  |
| MWH06.C3.Cx2010 |  | Electrical Equipment Yellow Tagging (Field Terminated equipment) | 10d | 2021-08-13 A | 2021-09-13 | MWH06-10215 FF, MWH06-10518, MWH06-10503, MWH06.S.1660, MWH06.C3.C2180 FF, MWH06.C3.C2420, MWH06.C3.C2400, MWH06.C3.C2380, MWH06.C3.C2440, MWH06-C3.P1800, MWH06.C3.C2135, MWH06.D6.C3.C2170, MWH06.D6.C3.C2160, MWH06.D6.C3.C2180, MWH06-10346, MWH06-10531, MWH06-10530, MWH06-10550 |  | 10d | 2021-08-13 | 2021-08-25 | -31d | 0d | VECA Electric [1200 h] | 1853 | 1 |  | 3 |  | 2 |  | 6 | 6 | 11 | 0 |  | 4 | 2 | 3 | 1 |  |
| MWH06-10217 |  | UPM Yellow tagging -COLO-3 CELL-2 | 10d | 2021-08-31 | 2021-09-13 | MWH06.C3.C2380, MWH06.S.1660, MWH06-10531, MWH06-10530 |  |  |  |  | -15d | 6d | VECA Electric | 1853 | 1 |  | 3 |  | 2 |  | 6 | 6 | 11 | 0 |  | 4 | 2 | 3 |  |  |
| MWH06-10056 |  | Control Power Available | 10d | 2021-09-09 | 2021-09-20 | MWH06.C3.Cx2010 FF+6d, MWH06-10531, MWH06-10530 |  |  |  |  | -21d | 0d | VECA Electric | 1853 | 1 |  | 3 |  | 2 |  | 6 | 6 | 11 | 0 |  | 4 | 2 | 3 |  |  |
| MWH06-10216 |  | Mechanical Equipment Yellow Tag | 10d | 2021-09-14 | 2021-09-24 | MWH06-10477, MWH06.C3.C2170, MWH06.C3.C2350, MWH06.C3.C2380, MWH06.D3.C3.C2040, MWH06-10531, MWH06-10530, MWH06-10207 |  |  |  |  | -25d | 0d | VECA Electric | 1853 | 1 |  | 3 |  | 2 |  | 6 | 6 | 11 | 0 |  | 4 | 2 | 3 |  |  |
| MWH06.C3.Cx2040 |  | Network Startup | 10d | 2021-09-14 | 2021-09-24 | MWH06.C3.C2400, MWH06.C3.Cx2010, MWH-06-03-L2CX-S, MWH06-10530 |  |  |  |  | -25d | 0d | LINX [600 h] | 1852 | 1 |  | 3 |  | 2 |  | 6 | 6 | 11 |  |  | 7 | 2 |  |  | 27 |
| MWH06-10057 |  | Power available for Start up | 4d | 2021-09-21 | 2021-09-24 | MWH06-10056, MWH06-10531, MWH06-10530, MWH06-10217 |  |  |  |  | -21d | 0d | VECA Electric | 1853 | 1 |  | 3 |  | 2 |  | 6 | 6 | 11 | 0 |  | 4 | 2 | 3 |  |  |
| MWH06.C3.Cx2090 |  | EPMS Checkout / Point to Point | 10d | 2021-09-27 | 2021-10-07 | MWH06.C3.Cx2040, MWH06-10530 |  |  |  |  | -11d | 0d | LINX [1200 h] | 32 | 1 |  | 3 |  | 2 |  | 6 | 6 | 11 |  |  | 7 | 2 |  |  |  |
| MWH06.C3.Cx2120 |  | OFCI Lvl 3 Testing & Start up (Electrical Equipment) | 16d | 2021-09-27 | 2021-10-14 | MWH06-10215, MWH06.C3.Cx2010, MWH06-10057, MWH06-10531, MWH06-10530 |  |  |  |  | -21d | 10d | VECA Electric [2000 h] | 1854 | 3 |  | 3 |  | 2 |  | 6 | 6 | 11 | 0 |  | 4 | 2 | 3 |  |  |
| MWH06.C3.Cx2130 |  | OFCI Lvl 3 Testing & Start up (Mechanical Equipment) | 12d | 2021-09-27 | 2021-10-09 | MWH06.C3.Cx2040, MWH06-10057, MWH06-10216, MWH06-10530 |  |  |  |  | -15d | 17d | TCM Mechanical [640 h] | 226 | 3 |  | 3 |  | 2 |  | 6 | 6 | 11 |  |  | 51 | 2 |  |  |  |
|  | 4 | **Cell 4** |  | 2021-08-03 | 2021-10-27 |  |  |  |  |  |  |  |  |  |  |  |  |  |  |  |  |  |  |  |  |  |  |  |  |  |
| MWH06-10347 |  | NETA test validation Inpections- VECA-EPS-RTS COLO-3 Cell-4 | 3d | 2021-08-03 A | 2021-08-05 A | MWH06.C3.C4420 FF, MWH06-10273 FF, MWH06-10531, MWH06-10530 | 100% |  | 2021-08-31 | 2021-09-02 |  |  | VECA Electric | 797 | 2 | 3-1 | 3 | 1 | 4 | 1 | 6 | 6 | 11 |  |  |  |  |  |  |  |
| MWH06-10218 |  | SE- Completed L2 QC Checklist | 10d | 2021-08-31 | 2021-09-13 | MWH06-10552, MWH06-10465, MWH06.D6.C3.C4180 FF, MWH06-10520 FF, MWH06-9942, MWH06-10326, MWH06-10531, MWH06-10530, MWH06-10614 |  |  |  |  | -21d | 10d | VECA Electric | 1857 | 1 |  | 3 |  | 4 |  | 6 | 6 | 11 | 0 | SE | 4 | 2 | 3 |  |  |
| MWH06-10220 |  | UPM Yellow tagging COLO-3 CELL-4 | 10d | 2021-08-31 | 2021-09-13 | MWH06.C3.C4370, MWH06-2679, MWH06-10531, MWH06-10530 |  |  |  |  | -15d | 16d | VECA Electric | 1857 | 1 |  | 3 |  | 4 |  | 6 | 6 | 11 | 0 |  | 4 | 2 | 3 |  |  |
| MWH06.C3.Cx2050 |  | Electrical Equipment Yellow Tagging (Field Terminated equipment) | 10d | 2021-09-14 | 2021-09-24 | MWH06-10218 FF, MWH06.C3.Cx2010 FF, MWH06-10520, MWH06-10501, MWH06-2679, MWH06.C3.C4190 FF, MWH06.C3.C4420, MWH06.C3.C4390, MWH06.C3.C4370, MWH06.C3.C4430, MWH06.C3.Cx2010, MWH06-C3.P1800, MWH06.C3.C4135, MWH06.D6.C3.C4160, MWH06.D6.C3.C4170, MWH06.D6.C3.C4180, MWH06-10347, MWH06-10531, MWH06-10530, MWH06-10552 |  |  |  |  | -31d | 0d | VECA Electric [1200 h] | 1857 | 1 |  | 3 |  | 4 |  | 6 | 6 | 11 | 0 |  | 4 | 2 | 3 | 1 |  |
| MWH06-10058 |  | Control Power Available | 10d | 2021-09-21 | 2021-10-02 | MWH06.C3.Cx2050 FF+6d, MWH06-10531, MWH06-10530 |  |  |  |  | -31d | 0d | VECA Electric | 1857 | 1 |  | 3 |  | 4 |  | 6 | 6 | 11 | 0 |  | 4 | 2 | 3 |  |  |
| MWH06-10219 |  | Mechanical Equipment Yellow Tag | 10d | 2021-09-27 | 2021-10-07 | MWH06-10477, MWH06.C3.C4140, MWH06.C3.C4380, MWH06.C3.C4370, MWH06.D3.C3.C4040, MWH06-10531, MWH06-10530, MWH06-10216 |  |  |  |  | -25d | 0d | VECA Electric | 1857 | 1 |  | 3 |  | 4 |  | 6 | 6 | 11 | 0 |  | 4 | 2 | 3 |  |  |
| MWH06.C3.Cx2100 |  | Network Startup | 10d | 2021-09-27 | 2021-10-07 | MWH06.C3.C4390, MWH06.C3.Cx2050, MWH06.C3.Cx2040, MWH-06-03-L2CX-S, MWH06-10530 |  |  |  |  | -25d | 0d | LINX [600 h] | 1856 | 1 |  | 3 |  | 4 |  | 6 | 6 | 11 |  |  | 7 | 2 |  |  | 27 |
| MWH06-10059 |  | Power available for Start up | 4d | 2021-10-04 | 2021-10-07 | MWH06-10058, MWH06-10531, MWH06-10530, MWH06-10220 |  |  |  |  | -31d | 0d | VECA Electric | 1857 | 1 |  | 3 |  | 4 |  | 6 | 6 | 11 | 0 |  | 4 | 2 | 3 |  |  |
| MWH06.C3.Cx2150 |  | EPMS Checkout / Point to Point | 10d | 2021-10-08 | 2021-10-20 | MWH06.C3.Cx2100, MWH06.C3.Cx2090, MWH06-10530 |  |  |  |  | -11d | 6d | LINX [1200 h] | 1858 | 1 |  | 3 |  | 4 |  | 6 | 6 | 11 |  |  | 7 | 2 |  |  |  |
| MWH06.C3.Cx2170 |  | OFCI Lvl 3 Testing & Start up (Electrical Equipment) | 16d | 2021-10-08 | 2021-10-27 | MWH06-10218, MWH06.C3.Cx2050, MWH06-10059, MWH06-10531, MWH06-10530 |  |  |  |  | -31d | 0d | VECA Electric [2000 h] | 1859 | 3 |  | 3 |  | 4 |  | 6 | 6 | 11 | 0 |  | 4 | 2 | 3 |  |  |
| MWH06.C3.Cx2190 |  | OFCI Lvl 3 Testing & Start up (Mechanical Equipment) | 12d | 2021-10-08 | 2021-10-22 | MWH06.C3.Cx2100, MWH06-10059, MWH06-10219, MWH06-10530 |  |  |  |  | -25d | 7d | TCM Mechanical [640 h] | 227 | 3 |  | 3 |  | 4 |  | 6 | 6 | 11 |  |  | 51 | 2 |  |  |  |

| ID | WBS | Activity | Duration | Start | Finish | Predecessors | Complete | Planned start | Planned finish | Total float | Free float | Calendar | Resources | MSP Activity ID | HRA - Safety Level | COLO | TRADE | MSFT-Funding Releases | CELL | WBS | Critical Path mer to COLO | HRA - Required Permit- Priority-1 | HRA - Required Permit- Priority-2 | VECA % Complete | COLO CRITICAL | HOT ITEMS | Critical Path-2 | MV CREW | SE activities | VECA- Changed | MWH06- TRADES |
| --- | --- | --- | --- | --- | --- | --- | --- | --- | --- | --- | --- | --- | --- | --- | --- | --- | --- | --- | --- | --- | --- | --- | --- | --- | --- | --- | --- | --- | --- | --- | --- |
|  | 6 | **L3** |  | 2021-10-08 | 2022-01-19 |  |  |  |  |  |  |  |  |  |  |  |  |  |  |  |  |  |  |  |  |  |  |  |  |  |  |
| MWH06-10069 |  | GEN SCR testing and Burnins | 15d | 2021-10-08 | 2021-10-26 | MWH06-10059, MWH06.C3.Cx2000, MWH06.C3.Cx2030 SS+5d, MWH06.C3.Cx2010, MWH06.C3.Cx2050 SS+5d, MWH06-10530 |  |  |  | -16d | 32d |  | TCM Mechanical | 1864 | 2 | 3 | 51 | 2 | Cx-3 | 7 | 3 | 6 | 11 |  |  |  |  |  |  |  |  |
| MWH06.C3.Cx3000 |  | Hydronic Pipe Flush (Open and closed Loop) | 12d | 2021-10-22 | 2021-11-04 | MWH-06-03-MEP-F FF, MWH-06-03-MEP-F, MWH06.C3.Cx2070 FF+2d, MWH06.C3.Cx2160 FF+2d, MWH06.C3.Cx2120 FF+2d, MWH06.C3.Cx2170 FF+2d, MWH06.C2.Cx3000 FS+9d, MWH-06-03-MER-F, MWH06-10530 |  |  |  | -36d | 0d |  | TCM Mechanical [1200 h] | 1864 | 2 | 3 | 51 | 2 | Cx-3 | 7 | 3 | 6 | 11 |  |  |  |  |  |  |  |  |
| MWH06.C3.Cx3020 |  | BAS Prefunctional Testing on Construction Server | 20d | 2021-11-01 | 2021-11-24 | MWH06.C3.Cx2110, MWH06.C3.Cx2180, MWH06.C3.Cx2130, MWH06.C3.Cx2190, MWH06.C2.Cx3020, MWH06.C3.C1130, MWH06.C3.C3130, MWH06.C3.C2130, MWH06.C3.C4160, MWH06-C3.P2000, MWH06-10530 |  |  |  | -22d | 0d |  | LINX [2000 h] | 1861 | 1 | 3 | 7 | 2 | Cx-3 | 7 |  | 6 | 11 |  |  |  |  |  |  |  |  |
| MWH06.C3.Cx3010 |  | Cooling Automation | 12d | 2021-11-05 | 2021-11-19 | MWH06.C3.Cx3000, MWH06.C3.Cx2070, MWH06.C3.Cx2110, MWH06.C3.Cx2160, MWH06.C3.Cx2180, MWH06.C3.Cx2120, MWH06.C3.Cx2130, MWH06.C3.Cx2170, MWH06.C3.Cx2190, MWH06.C2.Cx3010, MWH06-10530 |  |  |  | -36d | 0d |  | TCM Mechanical [1200 h] | 1863 | 1 | 3 | 51 | 2 | Cx-3 | 7 | 3 | 6 | 11 |  |  |  |  |  |  |  |  |
| MWH06.C3.Cx3030 |  | Load Bank & IR Scan | 18d | 2021-12-08 | 2022-01-03 | MWH-06-03-POW-F, MWH06.C3.Cx2150, MWH06.C3.Cx2090, MWH06.C3.Cx2140, MWH06.C3.Cx2060, MWH06.C2.Cx3030 FS+15d, MWH06.C3.Cx3010, MWH-06-03-EPM-F, MWH-06-03-L2CX-F, MWH-06-03-GEN-F, MWH-06-03-UPW-F, MWH06-10069, MWH06-10531, MWH06-10530 |  |  |  | -48d | 0d |  | VECA Electric [3600 h] | 1862 | 3 | 3 | 4 | 2 | Cx-3 | 7 | 3 | 6 | 4 | 0 | 2,3,4 | A | 1 |  |  |  |  |
| MWH06.C3.Cx3040 |  | Level 3 Cx- COLO-3 | 12d | 2022-01-04 | 2022-01-18 | MWH06-10593, MWH06.C3.Cx3030, MWH06.C3.Cx2060, MWH06.C3.Cx2140, MWH06.C3.Cx2090, MWH06.C3.Cx3020 FF+10d, MWH-06-03-BAS-F, MWH06.C3.C1400, MWH06.C3.C3370, MWH06.C3.C2390, MWH06.C3.C4410, MWH06.C3.C1190, MWH06.C3.C3170, MWH06.C3.C2210, MWH06.C3.C4210, MWH06-10531, MWH06-10530 |  |  |  | -48d | 0d |  | VECA Electric [1200 h] | 28 |  | 3 | 4 | 2 | Cx-3 | 7 | 3 |  | 11 | 0 |  | A | 1 |  |  |  |  |
| MWH06.C3.Cx3050 |  | Weather (5 Days) - 3 remaining Check Delay #14 for updates | 0d | 2022-01-19 | 2022-01-19 | MWH-06-03-FIR-F, MWH-06-03-EPMS-F, MWH06.C3.Cx3040, MWH06-10146, MWH06-9915, MWH06-9914, MWH06-10530 |  |  |  | -48d | 0d |  |  | 27 |  | 3 |  | 2 | Cx-3 | 7 | 3 |  |  |  |  |  |  |  |  |  |  |
|  | 5 | **L4 & L5 - IST** |  | 2022-01-19 | 2022-03-06 |  |  |  |  |  |  |  |  |  |  |  |  |  |  |  |  |  |  |  |  |  |  |  |  |  |  |
| MWH06.C3.Cx4000 |  | COLO 3 Level 4 & Level 5 IST | 21d | 2022-01-19 | 2022-02-08 | MWH-06-03-FIR-F, MWH-06-03-EPMS-F, MWH06.C3.C4460, MWH06.C3.C2460, MWH06.C3.C3420, MWH06.C3.C1460, MWH06.C3.Cx3040, MWH.06.M3010, MWH06-10531, MWH06-10530 |  |  |  | -67d | 0d | 7-8s wo/Holidays Clayco | VECA Electric [2240 h] | 230 | 2 | 3 | 4 | 2 | Cx-4 |  |  | 6 | 11 | 0 |  |  |  |  |  |  |  |
| MWH06.C3.Cx4030 |  | MST Ready for Network Install | 7d | 2022-01-19 | 2022-01-25 | MWH.06.M3010, MWH06-10531, MWH06-10530 |  |  |  | -53d | 0d | 7-8s wo/Holidays Clayco | VECA Electric [2240 h] | 42 |  | 3 | 4 | 2 | Cx-4 |  |  |  |  | 0 |  |  |  |  |  |  |  |
| MWH06.C3.Cx4010 |  | Security Commissioning (level2 with Corp net after IST) | 10d | 2022-02-09 | 2022-02-18 | MWH06.C3.Cx4000, MWH-06-03-FIR-F, MWH-06-03-EPMS-F, MWH06.C3.Cx3040, MWH06-10531, MWH06-10530 |  |  |  | -63d | 0d | 7-8s wo/Holidays Clayco | VECA Electric [2240 h] | 223 | 1 | 3 | 4 | 2 | Cx-4 |  |  | 6 | 11 |  |  |  |  |  |  |  |  |
| MWH06.C3.Cx4020 |  | Punch List COLO-3 | 14d | 2022-02-09 | 2022-02-22 | MWH-06-03-RNI-F, MWH-06-03-L5CX-F, MWH-06-03-L4CX-F, MWH06.C3.Cx4000, MWH06-C3.P2100, MWH06-10531, MWH06-10530 |  |  |  | -62d | 0d | 7-8s wo/Holidays Clayco | VECA Electric [2240 h] | 42 | 1 | 3 | 4 | 2 | Cx-4 |  |  | 6 | 11 | 0 |  |  |  |  |  |  |  |
| MWH06.C3.Cx4011 |  | Security Commissioning (level3 DCPS) | 5d | 2022-02-19 | 2022-02-23 | MWH06.C3.Cx4010, MWH06.C3.Cx4000, MWH-06-03-FIR-F, MWH-06-03-EPMS-F, MWH06.C3.Cx3040, MWH06-10531, MWH06-10530 |  |  |  | -63d | 0d | 7-8s wo/Holidays Clayco | VECA Electric [2240 h] | 223 | 1 | 3 | 4 | 2 | Cx-4 |  |  | 6 | 11 |  |  |  |  |  |  |  |  |
| MWH06.C3.Cx4050 |  | Final Clean/ ready for lock down | 12d | 2022-02-23 | 2022-03-06 | MWH06-10601, MWH-06-03-SC-F, MWH06.C3.Cx4020, MWH06-10531, MWH06-10530 |  |  |  | 48d | 0d | 7-8s wo/Holidays Clayco | VECA Electric [2240 h] | 42 | 1 | 3 | 4 | 2 | Cx-4 |  |  | 6 | 11 | 0 |  |  |  |  |  |  |  |
|  | 12 | **COLO-4 Cx** |  | 2021-07-31 | 2022-04-13 |  |  |  |  |  |  |  |  |  |  |  |  |  |  |  |  |  |  |  |  |  |  |  |  |  |  |
|  | 7 | **L2** |  | 2021-07-31 | 2021-12-10 |  |  |  |  |  |  |  |  |  |  |  |  |  |  |  |  |  |  |  |  |  |  |  |  |  |  |
|  | 1 | **Cell 1** |  | 2021-07-31 | 2021-11-29 |  |  |  |  |  |  |  |  |  |  |  |  |  |  |  |  |  |  |  |  |  |  |  |  |  |  |
| MWH06-10223 |  | UPM Yellow tagging -COLO-4 CELL-1 | 10d | 2021-07-31 A | 2021-08-11 A | MWH06.C4.C1380, MWH06.S.1780, MWH06-10531, MWH06-10530 | 100% | 2021-08-31 | 2021-09-13 |  |  |  | VECA Electric | 247 | 1 | 4 | 4 | 2 | 1 | 6 | 4 | 6 | 11 | 0 |  |  |  |  |  |  |  |
| MWH06-10348 |  | NETA test validation Inpections- VECA-EPS-RTS COLO-4 Cell-1 | 3d | 2021-09-17 | 2021-09-20 | MWH06.C4.C1420 FF, MWH06-10273 FF, MWH06-10531, MWH06-10530 |  |  |  | -14d | 18d |  | VECA Electric | 797 | 2 | 4 |  |  | 1 | 6 |  | 6 | 11 |  |  | 1 | 1 | 3-1 |  |  |  |
| MWH06-10221 |  | SE- Completed L2 QC Checklist | 10d | 2021-10-13 | 2021-10-25 | MWH06-10504, MWH06-10553, MWH06-10453, MWH06.D6.C4.C1180 FF, MWH06-10521 FF, MWH06-9943, MWH06-10327, MWH06-10531, MWH06-10530 |  |  |  | -32d | 0d |  | VECA Electric | 247 | 1 | 4 | 4 | 2 | 1 | 6 | 4 | 6 | 11 | 0 |  |  |  |  | SE |  |  |
| MWH06.C4.Cx2000 |  | Electrical Equipment Yellow Tagging (Field Terminated equipment) | 10d | 2021-10-13 | 2021-10-25 | MWH06-10221 FF, MWH06-10521, MWH06-10504, MWH06.S.1780, MWH06.C4.C1180 FF, MWH06.C4.C1420, MWH06.C4.C1400, MWH06.C4.C1430, MWH06.C4.C1210, MWH06.C4.C1380, MWH06.C4.C1440, MWH06.C4.C1135, MWH06.D6.C4.C1160, MWH06.D6.C4.C1150, MWH06.D6.C4.C1180, MWH06-10348, MWH06-10531, MWH06-10530, MWH06-10553 |  |  |  | -32d | 0d |  | VECA Electric [1200 h] | 247 | 1 | 4 | 4 | 2 | 1 | 6 | 4 | 6 | 11 | 0 |  |  |  |  |  | 1 |  |
| MWH06-10222 |  | Mechanical Equipment Yellow Tag | 10d | 2021-10-18 | 2021-10-28 | MWH06-10478, MWH06.C4.C1120, MWH06.C4.C1340, MWH06.C4.C1380, MWH06.D3.C4.C1040, MWH06-10531, MWH06-10530, MWH06-10213 |  |  |  | -19d | 0d |  | VECA Electric | 247 | 1 | 4 | 4 | 2 | 1 | 6 | 4 | 6 | 11 | 0 |  |  |  |  |  |  |  |
| MWH06-10060 |  | Control Power Available | 10d | 2021-10-21 | 2021-11-01 | MWH06.C4.Cx2000 FF+6d, MWH06-10531, MWH06-10530 |  |  |  | -22d | 0d |  | VECA Electric | 247 | 1 | 4 | 4 | 2 | 1 | 6 | 4 | 6 | 11 | 0 |  |  |  |  |  |  |  |
| MWH06.C4.Cx2020 |  | Network Startup | 10d | 2021-10-26 | 2021-11-05 | MWH06.C4.C1400, MWH06.C4.Cx2000, MWH-06-04-L2CX-S, MWH06-10530 |  |  |  | -26d | 0d |  | LINX [600 h] | 1869 | 1 | 4 | 7 | 2 | 1 | 6 |  | 6 | 11 |  |  |  |  |  |  |  | 27 |
| MWH06-10063 |  | Power available for Start up | 4d | 2021-11-02 | 2021-11-05 | MWH06-10060, MWH06-10531, MWH06-10530, MWH06-10223 |  |  |  | -22d | 0d |  | VECA Electric | 247 | 1 | 4 | 4 | 2 | 1 | 6 | 4 | 6 | 11 | 0 |  |  |  |  |  |  |  |
| MWH06.C4.Cx2060 |  | EPMS Checkout / Point to Point | 10d | 2021-11-02 | 2021-11-13 | MWH06-10060, MWH06-10530 |  |  |  | -8d | 4d |  | LINX [1200 h] | 1870 | 1 | 4 | 7 | 2 | 1 | 6 |  | 6 | 11 |  |  |  |  |  |  |  |  |
| MWH06.C4.Cx2070 |  | OFCI Lvl 3 Testing & Start up (Electrical Equipment) | 16d | 2021-11-08 | 2021-11-29 | MWH06.C4.Cx2000, MWH06-10063, MWH06-10221, MWH06-10531, MWH06-10530 |  |  |  | -22d | 10d |  | VECA Electric [2000 h] | 1871 | 3 | 4 | 4 | 2 | 1 | 6 | 4 | 6 | 11 | 0 |  |  |  |  |  |  |  |
| MWH06.C4.Cx2090 |  | OFCI Lvl 3 Testing & Start up (Mechanical Equipment) | 12d | 2021-11-08 | 2021-11-20 | MWH06.C4.Cx2020, MWH06-10063, MWH06-10222, MWH06-10530 |  |  |  | -16d | 10d |  | TCM Mechanical [640 h] | 279 | 3 | 4 | 51 | 2 | 1 | 6 |  | 6 | 11 |  |  |  |  |  |  |  |  |

Notes:
- MWH06.C3.Cx3030: VECA Update Notes: Incentive is based on 15 day durration from start to complete paperwork

| ID | WBS | Activity | Duration | Start | Finish | Predecessors | Complete | Planned start | Planned finish | Total float | Free float | Resources | MSP Activity ID | VECA % Complete | HRA - Safety Level | COLO | TRADE | MSFT-Funding Releases | CELL | WBS | Critical Path mer to COLO | HRA - Required Permit- Priority-1 | HRA - Required Permit- Priority-2 | MV CREW | HOT ITEMS | Critical Path-2 | SE activities | VECA- Changed | MWH06- TRADES |
| --- | --- | --- | --- | --- | --- | --- | --- | --- | --- | --- | --- | --- | --- | --- | --- | --- | --- | --- | --- | --- | --- | --- | --- | --- | --- | --- | --- | --- | --- |
|  | 2 | **Cell 3** |  | 2021-08-04 | 2021-12-10 |  |  |  |  |  |  |  |  |  |  |  |  |  |  |  |  |  |  |  |  |  |  |  |  |
| MWH06-10226 |  | UPM Yellow tagging -COLO-4 CELL-3 | 10d | 2021-08-04 A | 2021-08-16 A | MWH06.C4.C3380, MWH06-2684, MWH06-10531, MWH06-10530 | 100% | 2021-08-31 | 2021-09-13 |  |  | VECA Electric | 1874 | 0 | 1 | 4 | 4 | 2 | 3 | 6 | 4 | 6 | 11 |  |  |  |  |  |  |
| MWH06-10349 |  | NETA test validation Inpections- VECA-EPS-RTS COLO-4 Cell-3 | 3d | 2021-09-28 | 2021-09-30 | MWH06.C4.C3420 FF, MWH06-10273 FF, MWH06-10531, MWH06-10530 |  |  |  | -12d | 20d | VECA Electric | 797 |  | 2 | 4 |  |  | 3 | 6 |  | 6 | 11 | 3-1 | 1 | 1 |  |  |  |
| MWH06-10224 |  | SE- Completed L2 QC Checklist | 10d | 2021-10-23 | 2021-11-03 | MWH06-10506, MWH06-10555, MWH06-10455, MWH06.D6.C4.C3180 FF, MWH06-10523 FF, MWH06-9945, MWH06-10329, MWH06-10531, MWH06-10530 |  |  |  | -30d | 2d | VECA Electric | 1874 | 0 | 1 | 4 | 4 | 2 | 3 | 6 | 4 | 6 | 11 |  |  |  | SE |  |  |
| MWH06.C4.Cx2030 |  | Electrical Equipment Yellow Tagging (Field Terminated equipment) | 10d | 2021-10-26 | 2021-11-05 | MWH06-10224 FF, MWH06.C4.Cx2000 FF, MWH06-10523, MWH06-10506, MWH06-2684, MWH06.C4.C3390, MWH06.C4.C3200 FF, MWH06.C4.C3420, MWH06.C4.C3400, MWH06.C4.C3430, MWH06.C4.C3250 FF, MWH06.C4.C3380, MWH06.C4.C3440, MWH06.C4.Cx2000, MWH06-C4.P1800, MWH06.C4.C3135, MWH06.D6.C4.C3160, MWH06.D6.C4.C3150, MWH06.D6.C4.C3180, MWH06-10349, MWH06-10531, MWH06-10530, MWH06-10555 |  |  |  | -32d | 0d | VECA Electric [1200 h] | 1874 | 0 | 1 | 4 | 4 | 2 | 3 | 6 | 4 | 6 | 11 |  |  |  |  | 1 |  |
| MWH06-10225 |  | Mechanical Equipment Yellow Tag | 10d | 2021-10-29 | 2021-11-10 | MWH06-10478, MWH06.C4.C3120, MWH06.C4.C3390, MWH06.C4.C3380, MWH06.D3.C4.C3040, MWH06-10531, MWH06-10530, MWH06-10222 |  |  |  | -19d | 7d | VECA Electric | 1874 | 0 | 1 | 4 | 4 | 2 | 3 | 6 | 4 | 6 | 11 |  |  |  |  |  |  |
| MWH06-10061 |  | Control Power Available | 10d | 2021-11-02 | 2021-11-13 | MWH06.C4.Cx2030 FF+6d, MWH06-10531, MWH06-10530 |  |  |  | -32d | 0d | VECA Electric | 1874 | 0 | 1 | 4 | 4 | 2 | 3 | 6 | 4 | 6 | 11 |  |  |  |  |  |  |
| MWH06.C4.Cx2080 |  | Network Startup | 10d | 2021-11-08 | 2021-11-18 | MWH06.C4.C3400, MWH06.C4.Cx2030, MWH06.C4.Cx2020, MWH-06-04-L2CX-S, MWH06-10530 |  |  |  | -26d | 0d | LINX [600 h] | 1873 |  | 1 | 4 | 7 | 2 | 3 | 6 |  | 6 | 11 |  |  |  |  |  | 27 |
| MWH06-10062 |  | Power available for Start up | 4d | 2021-11-15 | 2021-11-18 | MWH06-10061, MWH06-10531, MWH06-10530, MWH06-10226 |  |  |  | -32d | 0d | VECA Electric | 1874 | 0 | 1 | 4 | 4 | 2 | 3 | 6 | 4 | 6 | 11 |  |  |  |  |  |  |
| MWH06.C4.Cx2140 |  | EPMS Checkout / Point to Point | 10d | 2021-11-19 | 2021-12-03 | MWH06.C4.Cx2080, MWH06.C4.Cx2060, MWH06-10530 |  |  |  | -12d | 36d | LINX [1200 h] | 1875 |  | 1 | 4 | 7 | 2 | 3 | 6 |  | 6 | 11 |  |  |  |  |  |  |
| MWH06.C4.Cx2150 |  | OFCI Lvl 3 Testing & Start up (Electrical Equipment) | 16d | 2021-11-19 | 2021-12-10 | MWH06-10224, MWH06.C4.Cx2030, MWH06-10062, MWH06-10531, MWH06-10530 |  |  |  | -32d | 0d | VECA Electric [2000 h] | 1876 | 0 | 3 | 4 | 4 | 2 | 3 | 6 | 4 | 6 | 11 |  |  |  |  |  |  |
| MWH06.C4.Cx2160 |  | OFCI Lvl 3 Testing & Start up (Mechanical Equipment) | 12d | 2021-11-19 | 2021-12-06 | MWH06.C4.Cx2080, MWH06-10062, MWH06-10225, MWH06-10530 |  |  |  | -26d | 0d | TCM Mechanical [640 h] | 281 |  | 3 | 4 | 51 | 2 | 3 | 6 |  | 6 | 11 |  |  |  |  |  |  |
|  | 3 | **Cell 2** |  | 2021-08-13 | 2021-11-29 |  |  |  |  |  |  |  |  |  |  |  |  |  |  |  |  |  |  |  |  |  |  |  |  |
| MWH06-10229 |  | UPM Yellow tagging -COLO-4 CELL-2 | 10d | 2021-08-13 A | 2021-08-26 A | MWH06.C4.C2380, MWH06.S.1810, MWH06-10531, MWH06-10530 | 100% | 2021-08-31 | 2021-09-13 |  |  | VECA Electric | 1879 | 0 | 1 | 4 | 4 | 2 | 2 | 6 | 4 | 6 | 11 |  |  |  |  |  |  |
| MWH06-10350 |  | NETA test validation Inpections- VECA-EPS-RTS COLO-4 Cell-2 | 3d | 2021-09-17 | 2021-09-20 | MWH06.C4.C2410 FF, MWH06-10273 FF, MWH06-10531, MWH06-10530 |  |  |  | -14d | 18d | VECA Electric | 797 |  | 2 | 4 |  |  | 2 | 6 |  | 6 | 11 | 3-1 | 1 | 1 |  |  |  |
| MWH06-10228 |  | Mechanical Equipment Yellow Tag | 10d | 2021-10-08 | 2021-10-20 | MWH06-10478, MWH06.C4.C2120, MWH06.C4.C2360, MWH06.C4.C2380, MWH06.D3.C4.C2040, MWH06-10531, MWH06-10530, MWH06-10219 |  |  |  | -12d | 0d | VECA Electric | 1879 | 0 | 1 | 4 | 4 | 2 | 2 | 6 | 4 | 6 | 11 |  |  |  |  |  |  |
| MWH06-10227 |  | SE- Completed L2 QC Checklist | 10d | 2021-10-13 | 2021-10-25 | MWH06-10507, MWH06-10554, MWH06-10454, MWH06.D6.C4.C2180 FF, MWH06-10522 FF, MWH06-9944, MWH06-10328, MWH06-10531, MWH06-10530 |  |  |  | -32d | 0d | VECA Electric | 1879 | 0 | 1 | 4 | 4 | 2 | 2 | 6 | 4 | 6 | 11 |  |  |  | SE |  |  |
| MWH06.C4.Cx2010 |  | Electrical Equipment Yellow Tagging (Field Terminated equipment) | 10d | 2021-10-13 | 2021-10-25 | MWH06-10227 FF, MWH06-10522, MWH06-10507, MWH06.S.1810, MWH06.C4.C2180 FF, MWH06.C4.C2410, MWH06.C4.C2390, MWH06.C4.C2420, MWH06.C4.C2210, MWH06.C4.C2380, MWH06.C4.C2440, MWH06-C4.P1800, MWH06.C4.C2135, MWH06.D6.C4.C2160, MWH06.D6.C4.C2150, MWH06.D6.C4.C2180, MWH06-10350, MWH06-10531, MWH06-10530, MWH06-10554 |  |  |  | -32d | 0d | VECA Electric [1200 h] | 1879 | 0 | 1 | 4 | 4 | 2 | 2 | 6 | 4 | 6 | 11 |  |  |  |  | 1 |  |
| MWH06-10064 |  | Control Power Available | 10d | 2021-10-21 | 2021-11-01 | MWH06.C4.Cx2010 FF+6d, MWH06-10531, MWH06-10530 |  |  |  | -22d | 0d | VECA Electric | 1879 | 0 | 1 | 4 | 4 | 2 | 2 | 6 | 4 | 6 | 11 |  |  |  |  |  |  |
| MWH06.C4.Cx2040 |  | Network Startup | 10d | 2021-10-26 | 2021-11-05 | MWH06.C4.C2390, MWH06.C4.Cx2010, MWH-06-04-L2CX-S, MWH06-10530 |  |  |  | -26d | 0d | LINX [600 h] | 1878 |  | 1 | 4 | 7 | 2 | 2 | 6 |  | 6 | 11 |  |  |  |  |  | 27 |
| MWH06-10065 |  | Power available for Start up | 4d | 2021-11-02 | 2021-11-05 | MWH06-10064, MWH06-10531, MWH06-10530, MWH06-10229 |  |  |  | -22d | 0d | VECA Electric | 1879 | 0 | 1 | 4 | 4 | 2 | 2 | 6 | 4 | 6 | 11 |  |  |  |  |  |  |
| MWH06.C4.Cx2100 |  | EPMS Checkout / Point to Point | 10d | 2021-11-08 | 2021-11-18 | MWH06.C4.Cx2040, MWH06-10530 |  |  |  | -12d | 0d | LINX [1200 h] | 1880 |  | 1 | 4 | 7 | 2 | 2 | 6 |  | 6 | 11 |  |  |  |  |  |  |
| MWH06.C4.Cx2120 |  | OFCI Lvl 3 Testing & Start up (Electrical Equipment) | 16d | 2021-11-08 | 2021-11-29 | MWH06-10227, MWH06.C4.Cx2010, MWH06-10065, MWH06-10531, MWH06-10530 |  |  |  | -22d | 10d | VECA Electric [2000 h] | 1881 | 0 | 3 | 4 | 4 | 2 | 2 | 6 | 4 | 6 | 11 |  |  |  |  |  |  |
| MWH06.C4.Cx2130 |  | OFCI Lvl 3 Testing & Start up (Mechanical Equipment) | 12d | 2021-11-08 | 2021-11-20 | MWH06.C4.Cx2040, MWH06-10065, MWH06-10228, MWH06-10530 |  |  |  | -16d | 10d | TCM Mechanical [640 h] | 278 |  | 3 | 4 | 51 | 2 | 2 | 6 |  | 6 | 11 |  |  |  |  |  |  |

| ID | WBS | Activity | Duration | Start | Finish | Predecessors | Complete | Remaining | Planned start | Planned finish | Total float | Free float | Expected finish | Calendar | Resources | MSP Activity ID | VECA % Complete | HRA - Safety Level | COLO | TRADE | MSFT-Funding Releases | CELL | WBS | Critical Path mer to COLO | HRA - Required Permit- Priority-1 | HRA - Required Permit- Priority-2 | MV CREW | HOT ITEMS | Critical Path-2 | SE activities | VECA- Changed | MWH06- TRADES | COLO CRITICAL |
| --- | --- | --- | --- | --- | --- | --- | --- | --- | --- | --- | --- | --- | --- | --- | --- | --- | --- | --- | --- | --- | --- | --- | --- | --- | --- | --- | --- | --- | --- | --- | --- | --- | --- |
|  | 4 | **Cell 4** |  | 2021-08-24 | 2021-12-10 |  |  |  |  |  |  |  |  |  |  |  |  |  |  |  |  |  |  |  |  |  |  |  |  |  |  |  |  |
| MWH06-10232 |  | UPM Yellow tagging -COLO-4 CELL-4 | 10d | 2021-08-24 A | 2021-09-07 | MWH06.C4.C4370, MWH06-2680, MWH06-10429, MWH06-10531, MWH06-10530 | 50% | 5d | 2021-08-31 | 2021-09-13 | 23d | 0d | 2021-09-07 |  | VECA Electric | 1884 | 0 | 1 | 4 | 4 | 2 | 4 | 6 | 4 | 6 | 11 |  |  |  |  |  |  |  |
| MWH06-10351 |  | NETA test validation Inpections- VECA-EPS-RTS COLO-4 Cell-4 | 3d | 2021-09-18 | 2021-09-21 | MWH06.C4.C4420 FF, MWH06-10273 FF, MWH06-10531, MWH06-10530 |  |  |  |  | -5d | 27d |  |  | VECA Electric | 797 |  | 2 | 4 |  |  | 4 | 6 |  | 6 | 11 | 3-1 | 1 | 1 |  |  |  |  |
| MWH06-10230 |  | SE- Completed L2 QC Checklist | 10d | 2021-10-13 | 2021-10-25 | MWH06-10505, MWH06-10556, MWH06-10456, MWH06.D6.C4.C4180 FF, MWH06-10524 FF, MWH06-9946, MWH06-10330, MWH06-10531, MWH06-10530 |  |  |  |  | -22d | 10d |  |  | VECA Electric | 1884 | 0 | 1 | 4 | 4 | 2 | 4 | 6 | 4 | 6 | 11 |  |  |  | SE |  |  |  |
| MWH06-10231 |  | Mechanical Equipment Yellow Tag | 10d | 2021-10-21 | 2021-11-01 | MWH06-10478, MWH06.C4.C4120, MWH06.C4.C4390, MWH06.C4.C4370, MWH06.D3.C4.C4040, MWH06-10531, MWH06-10530, MWH06-10228 |  |  |  |  | -12d | 14d |  |  | VECA Electric | 1884 | 0 | 1 | 4 | 4 | 2 | 4 | 6 | 4 | 6 | 11 |  |  |  |  |  |  |  |
| MWH06.C4.Cx2050 |  | Electrical Equipment Yellow Tagging (Field Terminated equipment) | 10d | 2021-10-26 | 2021-11-05 | MWH06-10230 FF, MWH06.C4.Cx2010 FF, MWH06-10524, MWH06-10505, MWH06-2680, MWH06.C4.C4200 FF, MWH06.C4.C4420, MWH06.C4.C4400, MWH06.C4.C4430, MWH06.C4.C4240, MWH06.C4.C4370, MWH06.C4.C4440, MWH06.C4.Cx2010, MWH06-C4.P1800, MWH06.C4.C4135, MWH06.D6.C4.C4150, MWH06.D6.C4.C4160, MWH06.D6.C4.C4180, MWH06-10351, MWH06-10531, MWH06-10530, MWH06-10556 |  |  |  |  | -32d | 0d |  |  | VECA Electric [1200 h] | 1884 | 0 | 1 | 4 | 4 | 2 | 4 | 6 | 4 | 6 | 11 |  |  |  |  | 1 |  |  |
| MWH06-10066 |  | Control Power Available | 10d | 2021-11-02 | 2021-11-13 | MWH06.C4.Cx2050 FF+6d, MWH06-10531, MWH06-10530 |  |  |  |  | -32d | 0d |  |  | VECA Electric | 1884 | 0 | 1 | 4 | 4 | 2 | 4 | 6 | 4 | 6 | 11 |  |  |  |  |  |  |  |
| MWH06.C4.Cx2110 |  | Network Startup | 10d | 2021-11-08 | 2021-11-18 | MWH06.C4.C4400, MWH06.C4.Cx2050, MWH06.C4.Cx2040, MWH-06-04-L2CX-S, MWH06-10530 |  |  |  |  | -26d | 0d |  |  | LINX [600 h] | 1883 |  | 1 | 4 | 7 | 2 | 4 | 6 |  | 6 | 11 |  |  |  |  |  | 27 |  |
| MWH06-10067 |  | Power available for Start up | 4d | 2021-11-15 | 2021-11-18 | MWH06-10066, MWH06-10531, MWH06-10530, MWH06-10232 |  |  |  |  | -32d | 0d |  |  | VECA Electric | 1884 | 0 | 1 | 4 | 4 | 2 | 4 | 6 | 4 | 6 | 11 |  |  |  |  |  |  |  |
| MWH06.C4.Cx2170 |  | EPMS Checkout / Point to Point | 10d | 2021-11-19 | 2021-12-03 | MWH06.C4.Cx2110, MWH06.C4.Cx2100, MWH06-10530 |  |  |  |  | -12d | 36d |  |  | LINX [1200 h] | 1885 |  | 1 | 4 | 7 | 2 | 4 | 6 |  | 6 | 11 |  |  |  |  |  |  |  |
| MWH06.C4.Cx2180 |  | OFCI Lvl 3 Testing & Start up (Electrical Equipment) | 16d | 2021-11-19 | 2021-12-10 | MWH06-10230, MWH06.C4.Cx2050, MWH06-10067, MWH06-10531, MWH06-10530 |  |  |  |  | -32d | 0d |  |  | VECA Electric [2000 h] | 1886 | 0 | 3 | 4 | 4 | 2 | 4 | 6 | 4 | 6 | 11 |  |  |  |  |  |  |  |
| MWH06.C4.Cx2190 |  | OFCI Lvl 3 Testing & Start up (Mechanical Equipment) | 12d | 2021-11-19 | 2021-12-06 | MWH06.C4.Cx2110, MWH06-10067, MWH06-10231, MWH06-10530 |  |  |  |  | -26d | 0d |  |  | TCM Mechanical [640 h] | 280 |  | 3 | 4 | 51 | 2 | 4 | 6 |  | 6 | 11 |  |  |  |  |  |  |  |
|  | 6 | **L3** |  | 2021-11-19 | 2022-02-28 |  |  |  |  |  |  |  |  |  |  |  |  |  |  |  |  |  |  |  |  |  |  |  |  |  |  |  |  |
| MWH06-10070 |  | GEN SCR testing and Burnins | 15d | 2021-11-19 | 2021-12-09 | MWH06-10067, MWH06.C4.Cx2000, MWH06.C4.Cx2030 SS+5d, MWH06.C4.Cx2010, MWH06.C4.Cx2050 SS+5d, MWH06-10530 |  |  |  |  | -17d | 31d |  |  | TCM Mechanical | 1891 |  | 2 | 4 | 51 | 2 | Cx-3 | 7 | 4 | 6 | 11 |  |  |  |  |  |  |  |
| MWH06.C4.Cx3000 |  | Hydronic Pipe Flush (Open and closed Loop) | 12d | 2021-11-30 | 2021-12-13 | MWH-06-04-MEP-F FF, MWH-06-04-MEP-F, MWH06.C4.Cx2070 FF+2d, MWH06.C4.Cx2150 FF+2d, MWH06.C4.Cx2120 FF+2d, MWH06.C4.Cx2180 FF+2d, MWH06.C3.Cx3000, MWH-06-04-MER-F, MWH06-10530 |  |  |  |  | -32d | 0d |  |  | TCM Mechanical [1200 h] | 1891 |  | 2 | 4 | 51 | 2 | Cx-3 | 7 | 4 | 6 | 11 |  |  |  |  |  |  |  |
| MWH06.C4.Cx3020 |  | BAS Prefunctional Testing on Construction Server | 20d | 2021-12-07 | 2022-01-04 | MWH06.C4.Cx2090, MWH06.C4.Cx2160, MWH06.C4.Cx2130, MWH06.C4.Cx2190, MWH06.C3.Cx3020, MWH06.C4.C1160, MWH06.C4.C3160, MWH06-C4.P2000, MWH06-10530 |  |  |  |  | -16d | 0d |  |  | LINX [2000 h] | 1888 |  | 1 | 4 | 7 | 2 | Cx-3 | 7 |  | 6 | 11 |  |  |  |  |  |  |  |
| MWH06.C4.Cx3010 |  | Cooling Automation | 12d | 2021-12-14 | 2021-12-30 | MWH06.C4.Cx3000, MWH06.C4.Cx2070, MWH06.C4.Cx2090, MWH06.C4.Cx2150, MWH06.C4.Cx2160, MWH06.C4.Cx2120, MWH06.C4.Cx2130, MWH06.C4.Cx2180, MWH06.C4.Cx2190, MWH06.C3.Cx3010, MWH06-10530 |  |  |  |  | -32d | 0d |  |  | TCM Mechanical [1200 h] | 1890 |  | 1 | 4 | 51 | 2 | Cx-3 | 7 | 4 | 6 | 11 |  |  |  |  |  |  |  |
| MWH06.C4.Cx3030 |  | Load Bank & IR Scan | 18d | 2022-01-22 | 2022-02-12 | MWH-06-04-POW-F, MWH06.C4.Cx2170, MWH06.C4.Cx2100, MWH06.C4.Cx2140, MWH06.C4.Cx2060, MWH06.C4.Cx3010, MWH06.C3.Cx3030 FS+15d, MWH-06-04-EPM-F, MWH-06-04-L2CX-F, MWH-06-04-GEN-F, MWH-06-04-UPW-F, MWH06-10070, MWH06-10531, MWH06-10530 |  |  |  |  | -48d | 0d |  |  | VECA Electric [3600 h] | 1889 | 0 | 3 | 4 | 4 | 2 | Cx-3 | 7 | 4 | 6 | 4 |  | A | 1 |  |  |  | 2,3,4 |
| MWH06.C4.Cx3040 |  | Level 3 Cx - COLO-4 | 12d | 2022-02-14 | 2022-02-26 | MWH06-10594, MWH06.C4.Cx3030, MWH06.C4.Cx2060, MWH06.C4.Cx2140, MWH06.C4.Cx2100, MWH06.C4.Cx3020 FF+10d, MWH-06-04-BAS-F, MWH06.C4.C1410, MWH06.C4.C3410, MWH06.C4.C2430, MWH06.C4.C4410, MWH06.C4.C1210, MWH06.C4.C3250, MWH06.C4.C2210, MWH06.C4.C4240, MWH06-10531, MWH06-10530 |  |  |  |  | -48d | 0d |  |  | VECA Electric [1200 h] | 38 | 0 |  | 4 | 4 | 2 | Cx-3 | 7 | 4 |  | 11 |  | A | 1 |  |  |  | 2,3,4 |
| MWH06.C4.Cx3050 |  | Weather (5 Days) - 3 remaining Check Delay #14 for updates | 0d | 2022-02-28 | 2022-02-28 | MWH-06-04-FIR-F, MWH-06-04-EPMS-F, MWH06.C4.Cx3040, MWH06-10146, MWH06-9915, MWH06-9914, MWH06-10530 |  |  |  |  | -48d | 0d |  |  |  | 40 |  |  | 4 |  | 2 | Cx-3 | 7 | 4 |  |  |  |  |  |  |  |  | 2,3,4 |
|  | 5 | **L4 & L5 - IST** |  | 2022-02-28 | 2022-04-13 |  |  |  |  |  |  |  |  |  |  |  |  |  |  |  |  |  |  |  |  |  |  |  |  |  |  |  |  |
| MWH06.C4.Cx4000 |  | COLO 4 Level 4 & Level 5 IST | 21d | 2022-02-28 | 2022-03-20 | MWH-06-04-FIR-F, MWH-06-04-EPMS-F, MWH06.C4.C4460, MWH06.C4.C2460, MWH06.C4.C3460, MWH06.C4.C1460, MWH06.C4.Cx3040, MWH.06.M4010, MWH06-10531, MWH06-10530 |  |  |  |  | -61d | 0d |  | 7-8s wo/Holidays Clayco | VECA Electric [2240 h] | 283 | 0 | 2 | 4 | 4 | 2 | Cx-4 |  |  | 6 | 11 |  |  |  |  |  |  |  |
| MWH06.C4.Cx4030 |  | MST Ready for Network Install | 7d | 2022-02-28 | 2022-03-06 | MWH.06.M4010, MWH06-10531, MWH06-10530 |  |  |  |  | -46d | 0d |  | 7-8s wo/Holidays Clayco | VECA Electric [2240 h] | 275 | 0 |  | 4 | 4 | 2 | Cx-4 |  |  |  |  |  |  |  |  |  |  |  |
| MWH06.C4.Cx4010 |  | Security Commissioning (level2 with Corp net after IST) | 10d | 2022-03-21 | 2022-03-30 | MWH06.C4.Cx4000, MWH-06-04-FIR-F, MWH-06-04-EPMS-F, MWH06.C4.Cx3030, MWH06.C4.Cx3040, MWH06-10531, MWH06-10530 |  |  |  |  | 0d |  |  | 7-8s wo/Holidays Clayco | VECA Electric [2240 h] | 276 |  | 1 | 4 | 4 | 2 | Cx-4 |  |  | 6 | 11 |  |  |  |  |  |  |  |
| MWH06.C4.Cx4020 |  | Punch List COLO-4 | 13d | 2022-03-21 | 2022-04-02 | MWH-06-04-RNI-F, MWH-06-04-L5CX-F, MWH-06-04-L4CX-F, MWH06.C4.Cx4000, MWH06-C4.P2100, MWH06-10531, MWH06-10530 |  |  |  |  | -60d | 0d |  | 7-8s wo/Holidays Clayco | VECA Electric [2240 h] | 275 | 0 | 1 | 4 | 4 | 2 | Cx-4 |  |  | 6 | 11 |  |  |  |  |  |  |  |
| MWH06.C4.Cx4011 |  | Security Commissioning (level3 DCPS) | 5d | 2022-03-31 | 2022-04-04 | MWH06.C4.Cx4010, MWH06.C4.Cx4000, MWH-06-04-FIR-F, MWH-06-04-EPMS-F, MWH06.C4.Cx3030, MWH06.C4.Cx3040, MWH06-10531, MWH06-10530 |  |  |  |  | 0d |  |  | 7-8s wo/Holidays Clayco | VECA Electric [2240 h] | 276 |  | 1 | 4 | 4 | 2 | Cx-4 |  |  | 6 | 11 |  |  |  |  |  |  |  |
| MWH06.C4.Cx4050 |  | Final Clean/ ready for lock down | 11d | 2022-04-03 | 2022-04-13 | MWH06-10602, MWH-06-04-SC-F, MWH06.C4.Cx4020, MWH06-10531, MWH06-10530 |  |  |  |  | -60d | 0d |  | 7-8s wo/Holidays Clayco | VECA Electric [2240 h] | 275 | 0 | 1 | 4 | 4 | 2 | Cx-4 |  |  | 6 | 11 |  |  |  |  |  |  |  |

Notes:
- MWH06.C4.Cx3030: VECA Update Notes: Incentive is based on 15 day durration from start to complete paperwork

| ID | WBS | Activity | Type | Duration | Start | Finish | Predecessors | Complete | Planned start | Planned finish | Total float | Free float | COLO | CELL | HRA - Safety Level |
| --- | --- | --- | --- | --- | --- | --- | --- | --- | --- | --- | --- | --- | --- | --- | --- |
|  | 4 | **Punchlist** |  |  | 2021-07-26 | 2022-03-25 |  |  |  |  |  |  |  |  |  |
| MWH06-10573 |  | CSA Punchlist - COLO-1 |  | 10d | 2021-07-26 A | 2021-08-03 A |  | 100% | 2021-07-31 | 2021-08-11 |  |  |  |  |  |
| MWH06-10595 |  | MEP Punchlist - COLO-1 |  | 10d | 2021-09-07 | 2021-09-17 | MWH06.C1.Cx3030 |  |  |  | -22d | 11d |  |  |  |
| MWH06-10592 |  | CSA Punchlist - COLO-2 |  | 10d | 2021-10-08 | 2021-10-20 | MWH06.C2.Cx2150, MWH06.C2.Cx2180, MWH06.C2.Cx2080, MWH06.C2.Cx2120, MWH06.C2.Cx2170, MWH06.C2.Cx2190, MWH06.C2.Cx2110, MWH06.C2.Cx2130 |  |  |  | -27d | 22d |  |  |  |
| MWH06-10599 |  | AE/Owner Punchlist - COLO-1 |  | 5d | 2021-10-30 | 2021-11-04 | MWH06.C1.Cx4000 |  |  |  | -28d | 6d |  |  |  |
| MWH06-10593 |  | CSA Punchlist - COLO-3 |  | 10d | 2021-11-01 | 2021-11-12 | MWH06.C3.Cx2170, MWH06.C3.Cx2190, MWH06.C3.Cx2120, MWH06.C3.Cx2130, MWH06.C3.Cx2160, MWH06.C3.Cx2180, MWH06.C3.Cx2070, MWH06.C3.Cx2110 |  |  |  | -12d | 36d |  |  |  |
| MWH06-10596 |  | MEP Punchlist - COLO-2 |  | 10d | 2021-11-17 | 2021-12-01 | MWH06.C2.Cx3030 |  |  |  | -47d | 2d |  |  |  |
| MWH06-10594 |  | CSA Punchlist - COLO-4 |  | 10d | 2021-12-11 | 2021-12-23 | MWH06.C4.Cx2180, MWH06.C4.Cx2190, MWH06.C4.Cx2120, MWH06.C4.Cx2130, MWH06.C4.Cx2150, MWH06.C4.Cx2160, MWH06.C4.Cx2070, MWH06.C4.Cx2090 |  |  |  | -10d | 38d |  |  |  |
| MWH06-10600 |  | AE/Owner Punchlist - COLO-2 |  | 5d | 2021-12-27 | 2022-01-03 | MWH06.C2.Cx4010 |  |  |  | -41d | 4.1d |  |  |  |
| MWH06-10597 |  | MEP Punchlist - COLO-3 |  | 10d | 2022-01-04 | 2022-01-15 | MWH06.C3.Cx3030 |  |  |  | -46d | 2d |  |  |  |
| MWH06-10601 |  | AE/Owner Punchlist - COLO-3 |  | 5d | 2022-02-09 | 2022-02-14 | MWH06.C3.Cx4000 |  |  |  | 48.1d | 7.1d |  |  |  |
| MWH06-10598 |  | MEP Punchlist - COLO-4 |  | 10d | 2022-02-14 | 2022-02-24 | MWH06.C3.Cx3030, MWH06.C4.Cx3030 |  |  |  | -46d | 2d |  |  |  |
| MWH06-10602 |  | AE/Owner Punchlist - COLO-4 |  | 5d | 2022-03-21 | 2022-03-25 | MWH06.C4.Cx4000 |  |  |  | -44.9d | 7d |  |  |  |
|  | 5 | **Early Core & Shell Punch list** |  |  |  |  |  |  |  |  |  |  |  |  |  |
|  | 1 | **ADMIN/COLO-1** |  |  |  |  |  |  |  |  |  |  |  |  |  |
|  | 2 | **COLO-2** |  |  |  |  |  |  |  |  |  |  |  |  |  |
|  | 3 | **COLO-3** |  |  |  |  |  |  |  |  |  |  |  |  |  |
|  | 4 | **COLO-4** |  |  |  |  |  |  |  |  |  |  |  |  |  |
|  | 7 | **VOID ACTIVITIES** |  |  | 2020-08-29 | 2021-07-30 |  |  |  |  |  |  |  |  |  |
|  | 1 | **Update #1** |  |  | 2020-08-29 | 2020-09-26 |  |  |  |  |  |  |  |  |  |
| MWH06-9708 |  | UMS - ROJ COLO-2 |  | 0d | 2020-08-29 A | 2020-08-29 A | MWH06-9714 | 100% | 2020-08-31 | 2020-08-31 |  |  | S | All |  |
| MWH06-9709 |  | UMS - ROJ COLO-3 |  | 0d | 2020-08-29 A | 2020-08-29 A | MWH06-9714 | 100% | 2020-08-31 | 2020-08-31 |  |  | S | All |  |
| MWH06-9710 |  | UMS - ROJ COLO-4 |  | 0d | 2020-08-29 A | 2020-08-29 A | MWH06-9714 | 100% | 2020-08-31 | 2020-08-31 |  |  | S | All |  |
| MWH06-9711 |  | MSFT Delivery -UMS -COLO 4 ROJ |  | 0d | 2020-08-29 A | 2020-08-29 A | MWH06-9714 | 100% | 2020-08-31 | 2020-08-31 |  |  | S | All |  |
| MWH06-9712 |  | MSFT Delivery -UMS -COLO 3 ROJ |  | 0d | 2020-08-29 A | 2020-08-29 A | MWH06-9714 | 100% | 2020-08-31 | 2020-08-31 |  |  | S | All |  |
| MWH06-9713 |  | MSFT Delivery -UMS -COLO 2 ROJ |  | 0d | 2020-08-29 A | 2020-08-29 A | MWH06-9714 | 100% | 2020-08-31 | 2020-08-31 |  |  | S | All |  |
| MWH06-9714 |  | Void Activities start | milestone | 0d | 2020-08-29 A | 2020-08-29 A | MWH.06.M1000 | 100% | 2020-09-01 | 2020-09-01 |  |  | S | All |  |
| MWH06-C2.P2300 |  | TCO COLO 2 |  | 0d | 2020-08-29 A | 2020-08-29 A | MWH06-9714 | 100% | 2020-08-31 | 2020-08-31 |  |  | S | All |  |
| MWH06-P2529 |  | Weather Tight |  | 0d | 2020-08-29 A | 2020-08-29 A | MWH06-9714 | 100% | 2020-08-31 | 2020-08-31 |  |  | S | All |  |
| MWH06.E.1010 |  | Duct Bank - UMS01 to UPM COLO-1 Cell-1 |  | 0d | 2020-08-29 A | 2020-08-29 A | MWH06-9714 | 100% | 2020-08-31 | 2020-08-31 |  |  | S | All | 3 |
| MWH06.E.1020 |  | Duct Bank - UMS02 to UPM COLO-2 Cell-1 |  | 0d | 2020-08-29 A | 2020-08-29 A | MWH06-9714 | 100% | 2020-08-31 | 2020-08-31 |  |  | S | All | 3 |
| MWH06.E.1030 |  | Duct Bank - UMS03 to UPM COLO-3 Cell-1 |  | 0d | 2020-08-29 A | 2020-08-29 A | MWH06-9714 | 100% | 2020-08-31 | 2020-08-31 |  |  | S | All | 3 |
| MWH06.E.1040 |  | Duct Bank - UMS04 to UPM COLO-4 Cell-1 |  | 0d | 2020-08-29 A | 2020-08-29 A | MWH06-9714 | 100% | 2020-08-31 | 2020-08-31 |  |  | S | All | 3 |
| MWH06.E.1050 |  | PAD- COLO-1 UMS |  | 0d | 2020-08-29 A | 2020-08-29 A | MWH06-9714 | 100% | 2020-08-31 | 2020-08-31 |  |  | S | All |  |
| MWH06.E.1060 |  | PAD- COLO-2 UMS |  | 0d | 2020-08-29 A | 2020-08-29 A | MWH06-9714 | 100% | 2020-08-31 | 2020-08-31 |  |  | S | All |  |
| MWH06.E.1070 |  | PAD- COLO-3 UMS |  | 0d | 2020-08-29 A | 2020-08-29 A | MWH06-9714 | 100% | 2020-08-31 | 2020-08-31 |  |  | S | All |  |
| MWH06.E.1080 |  | PAD- COLO-4 UMS |  | 0d | 2020-08-29 A | 2020-08-29 A | MWH06-9714 | 100% | 2020-08-31 | 2020-08-31 |  |  | S | All |  |
| MWH06.E.1090 |  | Pull- UMS01- UPM COLO-1 Cell-1 |  | 0d | 2020-08-29 A | 2020-08-29 A | MWH06-9714 | 100% | 2020-08-31 | 2020-08-31 |  |  | S | All | 2 |
| MWH06.E.1100 |  | Pull- UMS02- UPM COLO-2 Cell-1 |  | 0d | 2020-08-29 A | 2020-08-29 A | MWH06-9714 | 100% | 2020-08-31 | 2020-08-31 |  |  | S | All | 2 |
| MWH06.E.1110 |  | Pull- UMS03- UPM COLO-3 Cell-1 |  | 0d | 2020-08-29 A | 2020-08-29 A | MWH06-9714 | 100% | 2020-08-31 | 2020-08-31 |  |  | S | All | 2 |
| MWH06.E.1120 |  | Pull- UMS04- UPM COLO-4 Cell-1 |  | 0d | 2020-08-29 A | 2020-08-29 A | MWH06-9714 | 100% | 2020-08-31 | 2020-08-31 |  |  | S | All | 2 |
| MWH06.E.1130 |  | Set- COLO-1 UMS |  | 0d | 2020-08-29 A | 2020-08-29 A | MWH06-9714 | 100% | 2020-08-31 | 2020-08-31 |  |  | S | All | 3 |
| MWH06.E.1140 |  | Set- COLO-2 UMS |  | 0d | 2020-08-29 A | 2020-08-29 A | MWH06-9714 | 100% | 2020-08-31 | 2020-08-31 |  |  | S | All | 3 |
| MWH06.E.1150 |  | Set- COLO-3 UMS |  | 0d | 2020-08-29 A | 2020-08-29 A | MWH06-9714 | 100% | 2020-08-31 | 2020-08-31 |  |  | S | All | 3 |
| MWH06.E.1160 |  | Set- COLO-4 UMS |  | 0d | 2020-08-29 A | 2020-08-29 A | MWH06-9714 | 100% | 2020-08-31 | 2020-08-31 |  |  | S | All | 3 |
| MWH06.E.1170 |  | Term Admin - UPM |  | 0d | 2020-08-29 A | 2020-08-29 A | MWH06-9714 | 100% | 2020-08-31 | 2020-08-31 |  |  | S | All | 1 |
| MWH06.E.1180 |  | Term COLO -1 Cell-3 UPM |  | 0d | 2020-08-29 A | 2020-08-29 A | MWH06-9714 | 100% | 2020-08-31 | 2020-08-31 |  |  | S | All | 1 |
| MWH06.E.1190 |  | Term COLO -1 Cell-4 UPM |  | 0d | 2020-08-29 A | 2020-08-29 A | MWH06-9714 | 100% | 2020-08-31 | 2020-08-31 |  |  | S | All | 1 |
| MWH06.E.1200 |  | Term COLO -2 Cell-4 UPM |  | 0d | 2020-08-29 A | 2020-08-29 A | MWH06-9714 | 100% | 2020-08-31 | 2020-08-31 |  |  | S | All | 1 |
| MWH06.E.1210 |  | Term COLO -2 Cell-3 UPM |  | 0d | 2020-08-29 A | 2020-08-29 A | MWH06-9714 | 100% | 2020-08-31 | 2020-08-31 |  |  | S | All | 1 |
| MWH06.E.1220 |  | Term COLO -3 Cell-4 UPM |  | 0d | 2020-08-29 A | 2020-08-29 A | MWH06-9714 | 100% | 2020-08-31 | 2020-08-31 |  |  | S | All | 1 |
| MWH06.E.1230 |  | Term COLO -3 Cell-3 UPM |  | 0d | 2020-08-29 A | 2020-08-29 A | MWH06-9714 | 100% | 2020-08-31 | 2020-08-31 |  |  | S | All | 1 |
| MWH06.E.1240 |  | Term COLO -4 Cell-4 UPM |  | 0d | 2020-08-29 A | 2020-08-29 A | MWH06-9714 | 100% | 2020-08-31 | 2020-08-31 |  |  | S | All | 1 |
| MWH06.E.1250 |  | Term COLO -4 Cell-3 UPM |  | 0d | 2020-08-29 A | 2020-08-29 A | MWH06-9714 | 100% | 2020-08-31 | 2020-08-31 |  |  | S | All | 1 |
| MWH06.E.1260 |  | Term- UMS01- Load side |  | 0d | 2020-08-29 A | 2020-08-29 A | MWH06-9714 | 100% | 2020-08-31 | 2020-08-31 |  |  | S | All | 1 |
| MWH06.E.1270 |  | Term- UMS02- Load side |  | 0d | 2020-08-29 A | 2020-08-29 A | MWH06-9714 | 100% | 2020-08-31 | 2020-08-31 |  |  | S | All | 1 |
| MWH06.E.1280 |  | Term- UMS03- Load side |  | 0d | 2020-08-29 A | 2020-08-29 A | MWH06-9714 | 100% | 2020-08-31 | 2020-08-31 |  |  | S | All | 1 |
| MWH06.E.1290 |  | Term- UMS04- Load side |  | 0d | 2020-08-29 A | 2020-08-29 A | MWH06-9714 | 100% | 2020-08-31 | 2020-08-31 |  |  | S | All | 1 |
| MWH06.E.1300 |  | Yellow Tagging for UMS01 |  | 0d | 2020-08-29 A | 2020-08-29 A | MWH06-9714 | 100% | 2020-08-31 | 2020-08-31 |  |  | S | All | 3 |
| MWH06.E.1310 |  | Yellow Tagging for UMS02 |  | 0d | 2020-08-29 A | 2020-08-29 A | MWH06-9714 | 100% | 2020-08-31 | 2020-08-31 |  |  | S | All | 3 |
| MWH06.E.1320 |  | Yellow Tagging for UMS03 |  | 0d | 2020-08-29 A | 2020-08-29 A | MWH06-9714 | 100% | 2020-08-31 | 2020-08-31 |  |  | S | All | 3 |
| MWH06.E.1330 |  | Yellow Tagging for UMS04 |  | 0d | 2020-08-29 A | 2020-08-29 A | MWH06-9714 | 100% | 2020-08-31 | 2020-08-31 |  |  | S | All | 3 |
| NEW1 |  | URS Vault design and Approval |  | 0d | 2020-08-29 A | 2020-08-29 A | MWH06-9714 | 100% | 2020-08-31 | 2020-08-31 |  |  | S | All |  |
| MWH06-9715 |  | Void Activities finish | milestone | 0d | 2020-09-26 A | 2020-09-26 A | NEW1, MWH06.E.1130, MWH06.E.1140, MWH06.E.1150, MWH06.E.1160, MWH06.E.1050, MWH06.E.1060, MWH06.E.1070, MWH06.E.1080, MWH06.E.1010, MWH06.E.1020, MWH06.E.1030, MWH06.E.1040, MWH06.E.1090, MWH06.E.1100, MWH06.E.1110, MWH06.E.1120, MWH06.E.1260, MWH06.E.1270, MWH06.E.1280, MWH06.E.1290, MWH06.E.1300, MWH06.E.1310, MWH06.E.1320, MWH06.E.1330, MWH06-9708, MWH06-9709, MWH06-9710, MWH06-9711, MWH06-9712, MWH06-9713, MWH06-C2.P2300, MWH06-P2529, MWH06.E.1190, MWH06.E.1200, MWH06.E.1220, MWH06.E.1240, MWH06.E.1180, MWH06.E.1210, MWH06.E.1230, MWH06.E.1250, MWH06.E.1170, MWH06.D6.C1.C4100, MWH06.D6.C2.C1140, MWH06.D6.C2.C2140, MWH06.D6.C2.C3140, MWH06.D6.C2.C4140, MWH06.D6.C3.C1160, MWH06.D6.C3.C2150, MWH06.D6.C3.C3160, MWH06.D6.C3.C4150, MWH06.D6.C4.C1170, MWH06.D6.C4.C2170, MWH06.D6.C4.C3170, MWH06.D6.C4.C4170, MWH06.D6.C1.C1100, MWH06.D6.C1.C2100, MWH06.D6.C1.C3100, MWH06.D4.C1.C1020, MWH06.D4.C1.C3020, MWH06.D4.C1.C2020, MWH06.D4.C1.C4020, MWH06.D4.C2.C1010, MWH06.D4.C2.C3010, MWH06.D4.C2.C2010, MWH06.D4.C3.C1010, MWH06.D4.C3.C2010, MWH06.D4.C3.C4010, MWH06.D4.C4.C1010, MWH06.D4.C4.C3010, MWH06.D4.C4.C2010, MWH06.D4.C4.C4010, MWH06.D4.C1.C1030, MWH06.D4.C1.C3030, MWH06.D4.C1.C2030, MWH06.D4.C1.C4030, MWH06.D4.C2.C1030, MWH06.D4.C2.C3030, MWH06.D4.C2.C2040, MWH06.D4.C2.C4020, MWH06.D4.C3.C1030, MWH06.D4.C3.C3020, MWH06.D4.C3.C2030, MWH06.D4.C3.C4030, MWH06.D4.C4.C1030, MWH06.D4.C4.C3030, MWH06.D4.C4.C2030, MWH06.D4.C4.C4030, MWH06.D4.C1.C1010, MWH06.D4.C1.C3010, MWH06.D4.C1.C2010, MWH06.D4.C1.C4010, MWH06.D4.C2.C1020, MWH06.D4.C2.C3020, MWH06.D4.C2.C2020, MWH06.D4.C2.C4010, MWH06.D4.C3.C1020, MWH06.D4.C3.C3010, MWH06.D4.C3.C2020, MWH06.D4.C3.C4020, MWH06.D4.C4.C1020, MWH06.D4.C4.C3020, MWH06.D4.C4.C2020, MWH06.D4.C4.C4020, MWH06-1970, MWH06-1971, MWH06.D3.C1.C1010, MWH06.D3.C1.C3010, MWH06.D3.C1.C2010, MWH06.D3.C1.C4000, MWH06.D3.C2.C1000, MWH06.D3.C2.C3010, MWH06.D3.C2.C2010, MWH06.D3.C3.C1010, MWH06.D3.C3.C2010, MWH06.D3.C3.C4010, MWH06.D3.C4.C1010, MWH06.D3.C4.C3010, MWH06.D3.C4.C2010, MWH06.D3.C4.C4010, MWH06.D6.S1020, MWH06.C1.C3160, MWH06.C1.C2170, MWH06.C1.C4160, MWH06.C2.C3160, MWH06.C2.C2150, MWH06.C2.C4130, MWH06.C3.C3070, MWH06.C3.C2080, MWH06.C3.C4080, MWH06.C4.C3050, MWH06.C4.C2050, MWH06.C4.C4050, MWH06-1969, MWH06-10140, MWH06-10141, MWH06-10142 | 100% | 2020-08-31 | 2020-08-31 |  |  | S | All |  |

| ID | WBS | Activity | Duration | Start | Finish | Predecessors | Complete | Planned start | Planned finish | Resources | HRA - Safety Level | COLO | CELL |
| --- | --- | --- | --- | --- | --- | --- | --- | --- | --- | --- | --- | --- | --- |
|  | 2 | **Update #2** |  | 2020-09-26 | 2020-09-26 |  |  |  |  |  |  |  |  |
| MWH06.D4.C1.C1010 |  | Overhead Rough-in Additional Lighting and Branch (DRB#2) | 0d | 2020-09-26 A | 2020-09-26 A | MWH06-9714 | 100% | 2020-10-22 | 2020-10-22 | VECA Electric | 2 | 1 | 1 |
| MWH06.D4.C1.C1020 |  | COLO Fluid Cooler Heat Trace Installation (DRB#2) | 0d | 2020-09-26 A | 2020-09-26 A | MWH06-9714 | 100% | 2020-12-17 | 2020-12-17 | VECA Electric |  | 1 | 1 |
| MWH06.D4.C1.C1030 |  | COLO Lighting installation (DRB#2) | 0d | 2020-09-26 A | 2020-09-26 A | MWH06-9714 | 100% | 2021-01-23 | 2021-01-23 | VECA Electric |  | 1 | 1 |
| MWH06.D4.C1.C2010 |  | Overhead Rough-in Additional Lighting and Branch (DRB#2) | 0d | 2020-09-26 A | 2020-09-26 A | MWH06-9714 | 100% | 2020-10-22 | 2020-10-22 | VECA Electric | 2 | 1 | 2 |
| MWH06.D4.C1.C2020 |  | COLO Fluid Cooler Heat Trace Installation (DRB#2) | 0d | 2020-09-26 A | 2020-09-26 A | MWH06-9714 | 100% | 2020-12-17 | 2020-12-17 | VECA Electric |  | 1 | 2 |
| MWH06.D4.C1.C2030 |  | COLO Lighting installation (DRB#2) | 0d | 2020-09-26 A | 2020-09-26 A | MWH06-9714 | 100% | 2021-01-23 | 2021-01-23 | VECA Electric |  | 1 | 2 |
| MWH06.D4.C1.C3010 |  | Overhead Rough-in Additional Lighting and Branch (DRB#2) | 0d | 2020-09-26 A | 2020-09-26 A | MWH06-9714 | 100% | 2020-11-04 | 2020-11-04 | VECA Electric | 2 | 1 | 3 |
| MWH06.D4.C1.C3020 |  | COLO Fluid Cooler Heat Trace Installation (DRB#2) | 0d | 2020-09-26 A | 2020-09-26 A | MWH06-9714 | 100% | 2020-12-17 | 2020-12-17 | VECA Electric |  | 1 | 3 |
| MWH06.D4.C1.C3030 |  | COLO Lighting installation (DRB#2) | 0d | 2020-09-26 A | 2020-09-26 A | MWH06-9714 | 100% | 2021-02-04 | 2021-02-04 | VECA Electric |  | 1 | 3 |
| MWH06.D4.C1.C4010 |  | Overhead Rough-in Additional Lighting and Branch (DRB#2) | 0d | 2020-09-26 A | 2020-09-26 A | MWH06-9714 | 100% | 2020-11-04 | 2020-11-04 | VECA Electric | 2 | 1 | 4 |
| MWH06.D4.C1.C4020 |  | COLO Fluid Cooler Heat Trace Installation (DRB#2) | 0d | 2020-09-26 A | 2020-09-26 A | MWH06-9714 | 100% | 2020-12-17 | 2020-12-17 | VECA Electric |  | 1 | 4 |
| MWH06.D4.C1.C4030 |  | COLO Lighting installation (DRB#2) | 0d | 2020-09-26 A | 2020-09-26 A | MWH06-9714 | 100% | 2021-02-08 | 2021-02-08 | VECA Electric |  | 1 | 4 |
| MWH06.D4.C2.C1010 |  | COLO Fluid Cooler Heat Trace Installation (DRB#2) | 0d | 2020-09-26 A | 2020-09-26 A | MWH06-9714 | 100% | 2020-12-17 | 2020-12-17 | VECA Electric |  | 2 | 1 |
| MWH06.D4.C2.C1020 |  | Overhead Rough-in Additional Lighting and Branch (DRB#2) | 0d | 2020-09-26 A | 2020-09-26 A | MWH06-9714 | 100% | 2020-12-02 | 2020-12-02 | VECA Electric | 2 | 2 | 1 |
| MWH06.D4.C2.C1030 |  | COLO Lighting installation (DRB#2) | 0d | 2020-09-26 A | 2020-09-26 A | MWH06-9714 | 100% | 2021-03-11 | 2021-03-11 | VECA Electric |  | 2 | 1 |
| MWH06.D4.C2.C2010 |  | COLO Fluid Cooler Heat Trace Installation (DRB#2) | 0d | 2020-09-26 A | 2020-09-26 A | MWH06-9714 | 100% | 2020-12-29 | 2020-12-29 | VECA Electric |  | 2 | 2 |
| MWH06.D4.C2.C2020 |  | Overhead Rough-in Additional Lighting and Branch (DRB#2) | 0d | 2020-09-26 A | 2020-09-26 A | MWH06-9714 | 100% | 2020-12-02 | 2020-12-02 | VECA Electric | 2 | 2 | 2 |
| MWH06.D4.C2.C2040 |  | COLO Lighting installation (DRB#2) | 0d | 2020-09-26 A | 2020-09-26 A | MWH06-9714 | 100% | 2021-03-11 | 2021-03-11 | VECA Electric |  | 2 | 2 |
| MWH06.D4.C2.C3010 |  | COLO Fluid Cooler Heat Trace Installation (DRB#2) | 0d | 2020-09-26 A | 2020-09-26 A | MWH06-9714 | 100% | 2020-12-18 | 2020-12-18 | VECA Electric |  | 2 | 3 |
| MWH06.D4.C2.C3020 |  | Overhead Rough-in Additional Lighting and Branch (DRB#2) | 0d | 2020-09-26 A | 2020-09-26 A | MWH06-9714 | 100% | 2020-12-15 | 2020-12-15 | VECA Electric | 2 | 2 | 3 |
| MWH06.D4.C2.C3030 |  | COLO Lighting installation (DRB#2) | 0d | 2020-09-26 A | 2020-09-26 A | MWH06-9714 | 100% | 2021-03-26 | 2021-03-26 | VECA Electric |  | 2 | 3 |
| MWH06.D4.C2.C4010 |  | Overhead Rough-in Additional Lighting and Branch (DRB#2) | 0d | 2020-09-26 A | 2020-09-26 A | MWH06-9714 | 100% | 2020-12-15 | 2020-12-15 | VECA Electric | 2 | 2 | 4 |
| MWH06.D4.C2.C4020 |  | COLO Lighting installation (DRB#2) | 0d | 2020-09-26 A | 2020-09-26 A | MWH06-9714 | 100% | 2021-03-26 | 2021-03-26 | VECA Electric |  | 2 | 4 |
| MWH06.D4.C3.C1010 |  | COLO Fluid Cooler Heat Trace Installation (DRB#2) | 0d | 2020-09-26 A | 2020-09-26 A | MWH06-9714 | 100% | 2021-01-07 | 2021-01-07 | VECA Electric |  | 3 | 1 |
| MWH06.D4.C3.C1020 |  | Overhead Rough-in Additional Lighting and Branch (DRB#2) | 0d | 2020-09-26 A | 2020-09-26 A | MWH06-9714 | 100% | 2021-01-30 | 2021-01-30 | VECA Electric | 2 | 3 | 1 |
| MWH06.D4.C3.C1030 |  | COLO Lighting installation (DRB#2) | 0d | 2020-09-26 A | 2020-09-26 A | MWH06-9714 | 100% | 2021-04-27 | 2021-04-27 | VECA Electric |  | 3 | 1 |
| MWH06.D4.C3.C2010 |  | COLO Fluid Cooler Heat Trace Installation (DRB#2) | 0d | 2020-09-26 A | 2020-09-26 A | MWH06-9714 | 100% | 2021-01-14 | 2021-01-14 | VECA Electric |  | 3 | 2 |
| MWH06.D4.C3.C2020 |  | Overhead Rough-in Additional Lighting and Branch (DRB#2) | 0d | 2020-09-26 A | 2020-09-26 A | MWH06-9714 | 100% | 2021-01-30 | 2021-01-30 | VECA Electric | 2 | 3 | 2 |
| MWH06.D4.C3.C2030 |  | COLO Lighting installation (DRB#2) | 0d | 2020-09-26 A | 2020-09-26 A | MWH06-9714 | 100% | 2021-05-03 | 2021-05-03 | VECA Electric |  | 3 | 2 |
| MWH06.D4.C3.C3010 |  | Overhead Rough-in Additional Lighting and Branch (DRB#2) | 0d | 2020-09-26 A | 2020-09-26 A | MWH06-9714 | 100% | 2021-02-12 | 2021-02-12 | VECA Electric | 2 | 3 | 3 |
| MWH06.D4.C3.C3020 |  | COLO Lighting installation (DRB#2) | 0d | 2020-09-26 A | 2020-09-26 A | MWH06-9714 | 100% | 2021-05-12 | 2021-05-12 | VECA Electric |  | 3 | 3 |
| MWH06.D4.C3.C4010 |  | COLO Fluid Cooler Heat Trace Installation (DRB#2) | 0d | 2020-09-26 A | 2020-09-26 A | MWH06-9714 | 100% | 2021-01-29 | 2021-01-29 | VECA Electric |  | 3 | 4 |
| MWH06.D4.C3.C4020 |  | Overhead Rough-in Additional Lighting and Branch (DRB#2) | 0d | 2020-09-26 A | 2020-09-26 A | MWH06-9714 | 100% | 2021-02-12 | 2021-02-12 | VECA Electric | 2 | 3 | 4 |
| MWH06.D4.C3.C4030 |  | COLO Lighting installation (DRB#2) | 0d | 2020-09-26 A | 2020-09-26 A | MWH06-9714 | 100% | 2021-05-12 | 2021-05-12 | VECA Electric |  | 3 | 4 |
| MWH06.D4.C4.C1010 |  | COLO Fluid Cooler Heat Trace Installation (DRB#2) | 0d | 2020-09-26 A | 2020-09-26 A | MWH06-9714 | 100% | 2021-02-05 | 2021-02-05 | VECA Electric |  | 4 | 1 |
| MWH06.D4.C4.C1020 |  | Overhead Rough-in Additional Lighting and Branch (DRB#2) | 0d | 2020-09-26 A | 2020-09-26 A | MWH06-9714 | 100% | 2021-03-09 | 2021-03-09 | VECA Electric | 2 | 4 | 1 |
| MWH06.D4.C4.C1030 |  | COLO Lighting installation (DRB#2) | 0d | 2020-09-26 A | 2020-09-26 A | MWH06-9714 | 100% | 2021-06-09 | 2021-06-09 | VECA Electric |  | 4 | 1 |
| MWH06.D4.C4.C2010 |  | COLO Fluid Cooler Heat Trace Installation (DRB#2) | 0d | 2020-09-26 A | 2020-09-26 A | MWH06-9714 | 100% | 2021-02-05 | 2021-02-05 | VECA Electric |  | 4 | 2 |
| MWH06.D4.C4.C2020 |  | Overhead Rough-in Additional Lighting and Branch (DRB#2) | 0d | 2020-09-26 A | 2020-09-26 A | MWH06-9714 | 100% | 2021-03-09 | 2021-03-09 | VECA Electric | 2 | 4 | 2 |
| MWH06.D4.C4.C2030 |  | COLO Lighting installation (DRB#2) | 0d | 2020-09-26 A | 2020-09-26 A | MWH06-9714 | 100% | 2021-06-04 | 2021-06-04 | VECA Electric |  | 4 | 2 |
| MWH06.D4.C4.C3010 |  | COLO Fluid Cooler Heat Trace Installation (DRB#2) | 0d | 2020-09-26 A | 2020-09-26 A | MWH06-9714 | 100% | 2021-02-20 | 2021-02-20 | VECA Electric |  | 4 | 3 |
| MWH06.D4.C4.C3020 |  | Overhead Rough-in Additional Lighting and Branch (DRB#2) | 0d | 2020-09-26 A | 2020-09-26 A | MWH06-9714 | 100% | 2021-03-22 | 2021-03-22 | VECA Electric | 2 | 4 | 3 |
| MWH06.D4.C4.C3030 |  | COLO Lighting installation (DRB#2) | 0d | 2020-09-26 A | 2020-09-26 A | MWH06-9714 | 100% | 2021-06-19 | 2021-06-19 | VECA Electric |  | 4 | 3 |
| MWH06.D4.C4.C4010 |  | COLO Fluid Cooler Heat Trace Installation (DRB#2) | 0d | 2020-09-26 A | 2020-09-26 A | MWH06-9714 | 100% | 2021-02-20 | 2021-02-20 | VECA Electric |  | 4 | 4 |
| MWH06.D4.C4.C4020 |  | Overhead Rough-in Additional Lighting and Branch (DRB#2) | 0d | 2020-09-26 A | 2020-09-26 A | MWH06-9714 | 100% | 2021-03-22 | 2021-03-22 | VECA Electric | 2 | 4 | 4 |
| MWH06.D4.C4.C4030 |  | COLO Lighting installation (DRB#2) | 0d | 2020-09-26 A | 2020-09-26 A | MWH06-9714 | 100% | 2021-06-19 | 2021-06-19 | VECA Electric |  | 4 | 4 |
| MWH06.D6.C1.C1100 |  | Install Added Overhead Rough In MER MECH EQ (DRB#3) | 6d | 2020-09-26 A | 2020-09-26 A | MWH06-9714 | 100% | 2020-09-28 | 2020-10-05 | VECA Electric | 2 | 1 | 1 |
| MWH06.D6.C1.C2100 |  | Install Added Overhead Rough In MER MECH EQ (DRB#3) | 6d | 2020-09-26 A | 2020-09-26 A | MWH06-9714 | 100% | 2020-09-28 | 2020-10-05 | VECA Electric | 2 | 1 | 2 |
| MWH06.D6.C1.C3100 |  | Install Added Overhead Rough In MER MECH EQ (DRB#3) | 6d | 2020-09-26 A | 2020-09-26 A | MWH06-9714 | 100% | 2020-09-28 | 2020-10-05 | VECA Electric | 2 | 1 | 3 |
| MWH06.D6.C1.C4100 |  | Install Added Overhead Rough In MER MECH EQ (DRB#3) | 6d | 2020-09-26 A | 2020-09-26 A | MWH06-9714 | 100% | 2020-09-28 | 2020-10-05 | VECA Electric | 2 | 1 | 4 |
| MWH06.D6.C2.C1140 |  | Install Added Overhead Rough In MER MECH EQ (DRB#3) | 6d | 2020-09-26 A | 2020-09-26 A | MWH06-9714 | 100% | 2020-09-28 | 2020-10-05 | VECA Electric | 2 | 2 | 1 |
| MWH06.D6.C2.C2140 |  | Install Added Overhead Rough In MER MECH EQ (DRB#3) | 6d | 2020-09-26 A | 2020-09-26 A | MWH06-9714 | 100% | 2020-09-28 | 2020-10-05 | VECA Electric | 2 | 2 | 2 |
| MWH06.D6.C2.C3140 |  | Install Added Overhead Rough In MER MECH EQ (DRB#3) | 6d | 2020-09-26 A | 2020-09-26 A | MWH06-9714 | 100% | 2020-09-28 | 2020-10-05 | VECA Electric | 2 | 2 | 3 |
| MWH06.D6.C2.C4140 |  | Install Added Overhead Rough In MER MECH EQ (DRB#3) | 6d | 2020-09-26 A | 2020-09-26 A | MWH06-9714 | 100% | 2020-09-28 | 2020-10-05 | VECA Electric | 2 | 2 | 4 |
| MWH06.D6.C3.C1160 |  | Install Added Overhead Rough In MER MECH EQ (DRB#3) | 6d | 2020-09-26 A | 2020-09-26 A | MWH06-9714 | 100% | 2020-09-28 | 2020-10-05 | VECA Electric | 2 | 3 | 1 |
| MWH06.D6.C3.C2150 |  | Install Added Overhead Rough In MER MECH EQ (DRB#3) | 6d | 2020-09-26 A | 2020-09-26 A | MWH06-9714 | 100% | 2020-09-28 | 2020-10-05 | VECA Electric | 2 | 3 | 2 |
| MWH06.D6.C3.C3160 |  | Install Added Overhead Rough In MER MECH EQ (DRB#3) | 6d | 2020-09-26 A | 2020-09-26 A | MWH06-9714 | 100% | 2020-09-28 | 2020-10-05 | VECA Electric | 2 | 3 | 3 |
| MWH06.D6.C3.C4150 |  | Install Added Overhead Rough In MER MECH EQ (DRB#3) | 6d | 2020-09-26 A | 2020-09-26 A | MWH06-9714 | 100% | 2020-09-28 | 2020-10-05 | VECA Electric | 2 | 3 | 4 |
| MWH06.D6.C4.C1170 |  | Install Added Overhead Rough In MER MECH EQ (DRB#3) | 6d | 2020-09-26 A | 2020-09-26 A | MWH06-9714 | 100% | 2020-09-28 | 2020-10-05 | VECA Electric | 2 | 4 | 1 |
| MWH06.D6.C4.C2170 |  | Install Added Overhead Rough In MER MECH EQ (DRB#3) | 6d | 2020-09-26 A | 2020-09-26 A | MWH06-9714 | 100% | 2020-09-28 | 2020-10-05 | VECA Electric | 2 | 4 | 2 |
| MWH06.D6.C4.C3170 |  | Install Added Overhead Rough In MER MECH EQ (DRB#3) | 6d | 2020-09-26 A | 2020-09-26 A | MWH06-9714 | 100% | 2020-09-28 | 2020-10-05 | VECA Electric | 2 | 4 | 3 |
| MWH06.D6.C4.C4170 |  | Install Added Overhead Rough In MER MECH EQ (DRB#3) | 6d | 2020-09-26 A | 2020-09-26 A | MWH06-9714 | 100% | 2020-09-28 | 2020-10-05 | VECA Electric | 2 | 4 | 4 |

| ID | WBS | Activity | Duration | Start | Finish | Predecessors | Complete | Planned start | Planned finish | Calendar | Resources | MSP Activity ID | HRA - Safety Level | COLO | MSFT-Funding Releases | CELL | WBS | HRA - Required Permit- Priority-1 | HRA - Required Permit- Priority-2 | Critical Path-1 |
| --- | --- | --- | --- | --- | --- | --- | --- | --- | --- | --- | --- | --- | --- | --- | --- | --- | --- | --- | --- | --- |
|  | 3 | **Update #3** |  | 2020-10-30 | 2020-10-31 |  |  |  |  |  |  |  |  |  |  |  |  |  |  |  |
| MWH06-1970 |  | Steel Supports for Exterior Mechanical Equipment (Fluid Cooler Steel & Pipe Steel Supports) | 4d | 2020-10-30 A | 2020-10-31 A | MWH06-9714 | 100% | 2020-11-02 | 2020-11-05 |  | Steel [160 h] | 915 | 3 | A | 1C | ADMIN | 3 |  |  |  |
| MWH06-1971 |  | Mechanical Equipment Piping Connections | 12d | 2020-10-31 A | 2020-10-31 A | MWH06-9714 | 100% | 2020-11-03 | 2020-11-17 |  | TCM Mechanical [720 h] | 916 | 2 | A | 1C | ADMIN | 3 |  |  |  |
| MWH06.D3.C1.C1010 |  | Fluid Cooler RI prefabrication | 6d | 2020-10-31 A | 2020-10-31 A | MWH06-9714 | 100% | 2020-11-02 | 2020-11-07 |  | VECA Electric |  |  | 1 |  | 1 |  |  |  |  |
| MWH06.D3.C1.C2010 |  | Fluid Cooler RI prefabrication | 6d | 2020-10-31 A | 2020-10-31 A | MWH06-9714 | 100% | 2020-11-02 | 2020-11-07 |  | VECA Electric |  |  | 1 |  | 2 |  |  |  |  |
| MWH06.D3.C1.C3010 |  | Fluid Cooler RI prefabrication | 6d | 2020-10-31 A | 2020-10-31 A | MWH06-9714 | 100% | 2020-11-02 | 2020-11-07 |  | VECA Electric |  |  | 1 |  | 3 |  |  |  |  |
| MWH06.D3.C1.C4000 |  | Fluid Cooler RI prefabrication | 6d | 2020-10-31 A | 2020-10-31 A | MWH06-9714 | 100% | 2020-11-02 | 2020-11-07 |  | VECA Electric |  |  | 1 |  | 4 |  |  |  |  |
| MWH06.D3.C2.C1000 |  | Fluid Cooler RI prefabrication | 6d | 2020-10-31 A | 2020-10-31 A | MWH06-9714 | 100% | 2020-11-02 | 2020-11-07 |  | VECA Electric |  |  | 2 |  | 1 |  |  |  |  |
| MWH06.D3.C2.C2010 |  | Fluid Cooler RI prefabrication | 6d | 2020-10-31 A | 2020-10-31 A | MWH06-9714 | 100% | 2020-11-30 | 2020-12-07 |  | VECA Electric |  |  | 2 |  | 2 |  |  |  |  |
| MWH06.D3.C2.C3010 |  | Fluid Cooler RI prefabrication | 6d | 2020-10-31 A | 2020-10-31 A | MWH06-9714 | 100% | 2020-11-02 | 2020-11-07 |  | VECA Electric |  |  | 2 |  | 3 |  |  |  |  |
| MWH06.D3.C3.C1010 |  | Fluid Cooler RI prefabrication | 6d | 2020-10-31 A | 2020-10-31 A | MWH06-9714 | 100% | 2020-12-10 | 2020-12-16 |  | VECA Electric |  |  | 3 |  | 1 |  |  |  |  |
| MWH06.D3.C3.C2010 |  | Fluid Cooler RI prefabrication | 6d | 2020-10-31 A | 2020-10-31 A | MWH06-9714 | 100% | 2020-12-16 | 2020-12-22 |  | VECA Electric |  |  | 3 |  | 2 |  |  |  |  |
| MWH06.D3.C3.C4010 |  | Fluid Cooler RI prefabrication | 6d | 2020-10-31 A | 2020-10-31 A | MWH06-9714 | 100% | 2020-12-23 | 2021-01-04 |  | VECA Electric |  |  | 3 |  | 4 |  |  |  |  |
| MWH06.D3.C4.C1010 |  | Fluid Cooler RI prefabrication | 6d | 2020-10-31 A | 2020-10-31 A | MWH06-9714 | 100% | 2021-01-07 | 2021-01-13 |  | VECA Electric |  |  | 4 |  | 1 |  |  |  |  |
| MWH06.D3.C4.C2010 |  | Fluid Cooler RI prefabrication | 6d | 2020-10-31 A | 2020-10-31 A | MWH06-9714 | 100% | 2021-01-14 | 2021-01-21 |  | VECA Electric |  |  | 4 |  | 2 |  |  |  |  |
| MWH06.D3.C4.C3010 |  | Fluid Cooler RI prefabrication | 6d | 2020-10-31 A | 2020-10-31 A | MWH06-9714 | 100% | 2021-01-22 | 2021-01-28 |  | VECA Electric |  |  | 4 |  | 3 |  |  |  |  |
| MWH06.D3.C4.C4010 |  | Fluid Cooler RI prefabrication | 6d | 2020-10-31 A | 2020-10-31 A | MWH06-9714 | 100% | 2021-01-26 | 2021-02-01 |  |  |  |  | 4 |  | 4 |  |  |  |  |
| MWH06.D6.S1020 |  | Submit and approve shop drawing for PEMB penetrations | 21d | 2020-10-31 A | 2020-10-31 A | MWH06-9714 | 100% | 2020-10-19 | 2020-11-08 | 7-8s wo/Holidays Clayco |  |  |  | 0 |  | All |  |  |  |  |
|  | 4 | **Update#4** |  | 2020-11-28 | 2020-11-28 |  |  |  |  |  |  |  |  |  |  |  |  |  |  |  |
| MWH06.C1.C2170 |  | Fire Riser Installation | 0d | 2020-11-28 A | 2020-11-28 A | MWH06-9714 | 100% | 2020-11-30 | 2020-11-30 |  |  | 1093 | 3 | 1 | 1C | 2 | 4 | 6 | 3 |  |
| MWH06.C1.C3160 |  | Fire Riser Installation | 0d | 2020-11-28 A | 2020-11-28 A | MWH06-9714 | 100% | 2020-11-30 | 2020-11-30 |  |  | 1080 |  | 1 | 1C | 3 | 4 | 6 | 3 |  |
| MWH06.C1.C4160 |  | Fire Riser Installation | 0d | 2020-11-28 A | 2020-11-28 A | MWH06-9714 | 100% | 2020-11-30 | 2020-11-30 |  |  | 1104 |  | 1 | 1C | 4 | 4 | 6 | 3 | 1 |
| MWH06.C2.C2150 |  | Fire Riser Installation | 0d | 2020-11-28 A | 2020-11-28 A | MWH06-9714 | 100% | 2020-11-30 | 2020-11-30 |  |  | 1303 |  | 2 | 2 | 2 | 4 | 6 | 3 |  |
| MWH06.C2.C3160 |  | Fire Riser Installation | 0d | 2020-11-28 A | 2020-11-28 A | MWH06-9714 | 100% | 2020-11-30 | 2020-11-30 |  |  | 1293 |  | 2 | 2 | 3 | 4 | 6 | 3 |  |
| MWH06.C2.C4130 |  | Fire Riser Installation | 0d | 2020-11-28 A | 2020-11-28 A | MWH06-9714 | 100% | 2020-11-30 | 2020-11-30 |  |  | 1313 |  | 2 | 2 | 4 | 4 | 6 | 3 |  |
| MWH06.C3.C2080 |  | Fire Riser Installation | 0d | 2020-11-28 A | 2020-11-28 A | MWH06-9714 | 100% | 2020-11-30 | 2020-11-30 |  |  | 1508 |  | 3 | 2 | 2 | 4 | 6 | 3 |  |
| MWH06.C3.C3070 |  | Fire Riser Installation | 0d | 2020-11-28 A | 2020-11-28 A | MWH06-9714 | 100% | 2020-11-30 | 2020-11-30 |  |  | 1497 |  | 3 | 2 | 3 | 4 | 6 | 3 |  |
| MWH06.C3.C4080 |  | Fire Riser Installation | 0d | 2020-11-28 A | 2020-11-28 A | MWH06-9714 | 100% | 2020-11-30 | 2020-11-30 |  |  | 1520 |  | 3 | 2 | 4 | 4 | 6 | 3 |  |
| MWH06.C4.C2050 |  | Fire Riser Installation | 0d | 2020-11-28 A | 2020-11-28 A | MWH06-9714 | 100% | 2020-11-30 | 2020-11-30 |  |  | 1726 |  | 4 | 2 | 2 | 4 | 6 | 3 |  |
| MWH06.C4.C3050 |  | Fire Riser Installation | 0d | 2020-11-28 A | 2020-11-28 A | MWH06-9714 | 100% | 2020-11-30 | 2020-11-30 |  |  | 1715 |  | 4 | 2 | 3 | 4 | 6 | 3 |  |
| MWH06.C4.C4050 |  | Fire Riser Installation | 0d | 2020-11-28 A | 2020-11-28 A | MWH06-9714 | 100% | 2020-11-30 | 2020-11-30 |  |  | 1737 |  | 4 | 2 | 4 | 4 | 6 | 3 |  |

| ID | WBS | Activity | Type | Duration | Start | Finish | Predecessors | Complete | Planned start | Planned finish | Resources | MSP Activity ID | VECA % Complete | HRA - Safety Level | COLO | TRADE | MSFT-Funding Releases | CELL | WBS | MWH06- TRADES | HRA - Required Permit- Priority-1 | HRA - Required Permit- Priority-2 | DELAY | COLO CRITICAL |
| --- | --- | --- | --- | --- | --- | --- | --- | --- | --- | --- | --- | --- | --- | --- | --- | --- | --- | --- | --- | --- | --- | --- | --- | --- |
|  | 6 | **Update#6** |  |  | 2021-01-30 | 2021-01-30 |  |  |  |  |  |  |  |  |  |  |  |  |  |  |  |  |  |  |
| MWH06-10140 |  | Yellow Tagging for COLO-2 UPM's |  | 10d | 2021-01-30 A | 2021-01-30 A | MWH06-9714 | 100% | 2021-01-29 | 2021-02-10 | VECA Electric [540 h] | 797 |  |  |  |  |  |  |  |  |  |  |  |  |
| MWH06-1969 |  | Pull/term/Test PDU to Power bus |  | 0d | 2021-01-30 A | 2021-01-30 A | MWH06-9714 | 100% | 2021-01-11 | 2021-01-11 | VECA Electric | 910 | 0 | 2 | A | 4 | 1C | ADMIN | 3 | 26 | 4 | 11 |  |  |
| MWH06-10141 |  | Yellow Tagging for COLO-3 UPM's |  | 1d | 2021-01-30 A | 2021-01-30 A | MWH06-9714 | 100% |  |  | VECA Electric [540 h] | 797 |  |  |  |  |  |  |  |  |  |  |  |  |
| MWH06-10142 |  | Yellow Tagging for COLO-4 UPM's |  | 1d | 2021-01-30 A | 2021-01-30 A | MWH06-9714 | 100% |  |  | VECA Electric [540 h] | 797 |  |  |  |  |  |  |  |  |  |  |  |  |
|  | 7 | **Update#7** |  |  | 2021-02-28 | 2021-02-28 |  |  |  |  |  |  |  |  |  |  |  |  |  |  |  |  |  |  |
| MWH06.D3.C1.C1050 |  | Fluid Cooler QAQC and Cx |  | 2d | 2021-02-28 A | 2021-02-28 A |  | 100% | 2021-03-01 | 2021-03-02 | Stetner Crew [20 h] |  |  |  | 1 | 4 |  | 1 |  |  |  |  | 3 |  |
| MWH06.D3.C1.C2050 |  | Fluid Cooler QAQC and Cx |  | 2d | 2021-02-28 A | 2021-02-28 A |  | 100% | 2021-03-01 | 2021-03-02 | Stetner Crew [20 h] |  |  |  | 1 | 4 |  | 2 |  |  |  |  | 3 |  |
| MWH06.D3.C1.C3050 |  | Fluid Cooler QAQC and Cx |  | 2d | 2021-02-28 A | 2021-02-28 A |  | 100% | 2021-03-10 | 2021-03-11 | Stetner Crew [20 h] |  |  |  | 1 | 4 |  | 3 |  |  |  |  | 3 |  |
| MWH06.D3.C1.C4040 |  | Fluid Cooler QAQC and Cx |  | 2d | 2021-02-28 A | 2021-02-28 A |  | 100% | 2021-03-08 | 2021-03-09 | Stetner Crew [20 h] |  |  |  | 1 | 4 |  | 4 |  |  |  |  | 3 |  |
| MWH06.D3.C2.C1040 |  | Fluid Cooler QAQC and Cx |  | 2d | 2021-02-28 A | 2021-02-28 A |  | 100% | 2021-03-18 | 2021-03-19 | Stetner Crew [20 h] |  |  |  | 2 | 4 |  | 1 |  |  |  |  | 3 |  |
| MWH06.D3.C2.C2050 |  | Fluid Cooler QAQC and Cx |  | 2d | 2021-02-28 A | 2021-02-28 A |  | 100% | 2021-04-02 | 2021-04-03 | Stetner Crew [20 h] |  |  |  | 2 | 4 |  | 2 |  |  |  |  | 3 |  |
| MWH06.D3.C2.C3050 |  | Fluid Cooler QAQC and Cx |  | 2d | 2021-02-28 A | 2021-02-28 A |  | 100% | 2021-03-26 | 2021-03-27 | Stetner Crew [20 h] |  |  |  | 2 | 4 |  | 3 |  |  |  |  | 3 |  |
| MWH06.D3.C3.C1050 |  | Fluid Cooler QAQC and Cx |  | 2d | 2021-02-28 A | 2021-02-28 A |  | 100% | 2021-04-06 | 2021-04-07 | Stetner Crew [20 h] |  |  |  | 3 | 4 |  | 1 |  |  |  |  | 3 |  |
| MWH06.D3.C3.C2050 |  | Fluid Cooler QAQC and Cx |  | 2d | 2021-02-28 A | 2021-02-28 A |  | 100% | 2021-04-14 | 2021-04-15 | Stetner Crew [20 h] |  |  |  | 3 | 4 |  | 2 |  |  |  |  | 3 |  |
| MWH06.D3.C3.C4050 |  | Fluid Cooler QAQC and Cx |  | 2d | 2021-02-28 A | 2021-02-28 A |  | 100% | 2021-04-21 | 2021-04-22 | Stetner Crew [20 h] |  |  |  | 3 | 4 |  | 4 |  |  |  |  | 3 |  |
| MWH06.D3.C4.C1050 |  | Fluid Cooler QAQC and Cx |  | 2d | 2021-02-28 A | 2021-02-28 A |  | 100% | 2021-04-14 | 2021-04-15 | Stetner Crew [20 h] |  |  |  | 4 | 4 |  | 1 |  |  |  |  | 3 |  |
| MWH06.D3.C4.C2050 |  | Fluid Cooler QAQC and Cx |  | 2d | 2021-02-28 A | 2021-02-28 A |  | 100% | 2021-04-28 | 2021-04-29 | Stetner Crew [20 h] |  |  |  | 4 | 4 |  | 2 |  |  |  |  | 3 |  |
| MWH06.D3.C4.C3050 |  | Fluid Cooler QAQC and Cx |  | 2d | 2021-02-28 A | 2021-02-28 A |  | 100% | 2021-04-21 | 2021-04-22 | Stetner Crew [20 h] |  |  |  | 4 | 4 |  | 3 |  |  |  |  | 3 |  |
| MWH06.D3.C4.C4050 |  | Fluid Cooler QAQC and Cx |  | 2d | 2021-02-28 A | 2021-02-28 A |  | 100% | 2021-05-06 | 2021-05-07 | Stetner Crew [20 h] |  |  |  | 4 | 4 |  | 4 |  |  |  |  | 3 |  |
|  | 8 | **Update#8** |  |  | 2021-03-01 | 2021-03-31 |  |  |  |  |  |  |  |  |  |  |  |  |  |  |  |  |  |  |
| MWH06-10297 |  | SE directs VECA to start Flex Conduit fixes | milestone | 0d | 2021-03-01 A | 2021-03-01 A |  | 100% | 2021-03-31 | 2021-03-31 |  |  |  |  | 2 |  |  | All |  |  |  |  | 19 |  |
| MWH06-10286 |  | COLO2 CELL3 Interior MER conduit installation utility side |  | 0d | 2021-03-26 A | 2021-03-30 A |  | 100% | 2021-04-06 | 2021-04-06 |  |  |  |  | 1 |  |  | 3 |  |  |  |  | 17 |  |
| MWH06-10288 |  | SE directs VECA to start Roxtec fixes | milestone | 0d | 2021-03-26 A | 2021-03-26 A |  | 100% | 2021-03-31 | 2021-03-31 |  |  |  |  | 1 |  |  | 3 |  |  |  |  | 17 |  |
| MWH06-10285 |  | COLO-2 CELL3 Rearrange Roxtec blocks per coordination layout |  | 0d | 2021-03-30 A | 2021-03-30 A |  | 100% | 2021-03-31 | 2021-03-31 |  |  |  |  | 2 |  |  | 3 |  |  |  |  | 17 |  |
| MWH06-10287 |  | COLO-2 CELL3 Interior MER conduit installation building side |  | 0d | 2021-03-30 A | 2021-03-30 A |  | 100% | 2021-04-20 | 2021-04-20 |  |  |  |  | 2 |  |  | 3 |  |  |  |  | 17 |  |
| MWH06-10296 |  | SE directs VECA to start Roxtec fixes | milestone | 0d | 2021-03-30 A | 2021-03-30 A |  | 100% | 2021-06-01 | 2021-06-01 |  |  |  |  | 1 |  |  | 4 |  |  |  |  | 17 |  |
| MWH06-10293 |  | COLO-2 Cell-4 Rearrange Roxtec blocks per coordination layout |  | 1d | 2021-03-31 A | 2021-03-31 A |  | 100% | 2021-06-01 | 2021-06-01 |  |  |  |  | 2 |  |  | 4 |  |  |  |  | 17 | 1 |
| MWH06-10294 |  | COLO2 CELL4 Interior MER conduit installation utility side |  | 1d | 2021-03-31 A | 2021-03-31 A |  | 100% | 2021-06-01 | 2021-06-01 |  |  |  |  | 1 |  |  | 4 |  |  |  |  | 17 |  |
| MWH06-10295 |  | COLO2 CELL4 Interior MER conduit installation building side |  | 1d | 2021-03-31 A | 2021-03-31 A |  | 100% | 2021-06-01 | 2021-06-01 |  |  |  |  | 2 |  |  | 4 | 3 |  |  |  | 17 | 1 |
| MWH06-10298 |  | COLO-2 Cell-1 MER Flex Conduit fixes |  | 1d | 2021-03-31 A | 2021-03-31 A |  | 100% | 2021-06-01 | 2021-06-01 |  |  |  |  | 2 |  |  | 1 |  |  |  |  | 19 |  |
| MWH06-10299 |  | COLO-2 Cell-2 MER Flex Conduit fixes |  | 1d | 2021-03-31 A | 2021-03-31 A |  | 100% | 2021-06-01 | 2021-06-01 |  |  |  |  | 2 |  |  | 2 |  |  |  |  | 19 |  |
| MWH06-10300 |  | COLO-2 Cell-3 MER Flex Conduit fixes |  | 1d | 2021-03-31 A | 2021-03-31 A |  | 100% | 2021-06-01 | 2021-06-01 |  |  |  |  | 2 |  |  | 3 |  |  |  |  | 19 |  |
| MWH06-10301 |  | COLO-2 Cell-4 MER Flex Conduit fixes |  | 1d | 2021-03-31 A | 2021-03-31 A |  | 100% | 2021-06-01 | 2021-06-01 |  |  |  |  | 2 |  |  | 4 |  |  |  |  | 19 | 1 |
| MWH06-10302 |  | COLO2 CELL1 MER Security/Telecom Missing Raceway installation |  | 1d | 2021-03-31 A | 2021-03-31 A |  | 100% | 2021-06-01 | 2021-06-01 |  |  |  |  | 2 |  |  | 1 |  |  |  |  | 16 |  |
| MWH06-10303 |  | COLO2 CELL2 MER Security/Telecom Missing Raceway installation |  | 1d | 2021-03-31 A | 2021-03-31 A |  | 100% | 2021-06-01 | 2021-06-01 |  |  |  |  | 2 |  |  | 2 |  |  |  |  | 16 |  |
| MWH06-10304 |  | COLO2 CELL3 MER Security/Telecom Missing Raceway installation |  | 1d | 2021-03-31 A | 2021-03-31 A |  | 100% | 2021-06-01 | 2021-06-01 |  |  |  |  | 2 |  |  | 3 |  |  |  |  | 16 |  |
| MWH06-10305 |  | COLO2 CELL4 MER Security/Telecom Missing Raceway installation |  | 1d | 2021-03-31 A | 2021-03-31 A |  | 100% | 2021-06-01 | 2021-06-01 |  |  |  |  | 2 |  |  | 4 |  |  |  |  | 16 |  |

| ID | WBS | Activity | Type | Duration | Start | Finish | Predecessors | Complete | Planned start | Planned finish | Constraint | COLO | COLO CRITICAL | CELL | WBS | DELAY | MSP Activity ID | HRA - Safety Level | TRADE | MSFT-Funding Releases | HRA - Required Permit- Priority-1 | HRA - Required Permit- Priority-2 |
| --- | --- | --- | --- | --- | --- | --- | --- | --- | --- | --- | --- | --- | --- | --- | --- | --- | --- | --- | --- | --- | --- | --- |
|  | 5 | **Update#10** |  |  |  |  |  |  |  |  |  |  |  |  |  |  |  |  |  |  |  |  |
|  | 9 | **Update#12** |  |  | 2020-12-21 | 2021-07-30 |  |  |  |  |  |  |  |  |  |  |  |  |  |  |  |  |
| MWH06-10075 |  | Sure Steel (Building, Mezz, Ceiling) - Create Punch list |  | 2d | 2020-12-21 A | 2020-12-23 A | MWH06.C4.CS1090 | 100% | 2021-01-02 | 2021-01-04 | start on or after 2020-12-09 |  |  |  |  |  |  |  |  |  |  |  |
| MWH06-10071 |  | Concrete interior - Create Punch list |  | 2d | 2021-01-04 A | 2021-01-11 A | MWH06-10075 | 100% | 2021-01-02 | 2021-01-04 |  |  |  |  |  |  |  |  |  |  |  |  |
| MWH06-10089 |  | Cascade- Create Punch list |  | 2d | 2021-01-11 A | 2021-01-12 A | MWH06-1975, MWH06.C1.C1180, MWH06.C1.C1190, MWH06.C1.C2220, MWH06.C1.C1190 FF, MWH06.C1.C1180 FF, MWH06.C1.C3170, MWH06.C1.C2220 FF, MWH06.C1.C4200, MWH06.C1.C1350, MWH06.C1.C3320, MWH06.C1.C2330, MWH06.C1.C4310 | 100% | 2021-04-26 | 2021-04-27 | start on or after 2021-01-13 |  |  |  |  |  |  |  |  |  |  |  |
| MWH06-10072 |  | Concrete interior - Complete Punch List |  | 6d | 2021-01-12 A | 2021-01-20 A | MWH06-10071 FF, MWH06-10071 | 100% | 2021-02-01 | 2021-02-08 | start on or after 2021-01-19 |  |  |  |  |  |  |  |  |  |  |  |
| MWH06-10076 |  | Sure Steel (Building, Mezz, Ceiling) - Complete Punch List |  | 6d | 2021-01-18 A | 2021-01-29 A | MWH06-10075 | 100% | 2021-02-01 | 2021-02-08 | start on or after 2021-01-12 |  |  |  |  |  |  |  |  |  |  |  |
| MWH06-10090 |  | Cascade - Complete Punch List |  | 6d | 2021-01-18 A | 2021-01-30 A | MWH06-10089 | 100% | 2021-04-28 | 2021-05-05 |  |  |  |  |  |  |  |  |  |  |  |  |
| MWH06-10485 |  | 6.1.50- ADP01- FCB23/FCB24 Two wire circuit design change and potential SCCS change(delete) |  | 4d | 2021-04-20 A | 2021-05-15 A |  | 100% | 2021-04-30 | 2021-05-05 |  |  |  |  |  |  |  |  |  |  |  |  |
| MWH06-10291 |  | COLO-2 CELL2 Interior MER conduit installation building (delete) |  | 0d | 2021-04-30 A | 2021-04-30 A | MWH06-10289, MWH06-10292 | 100% | 2021-06-01 | 2021-06-01 |  | 2 | 1 | 2 | 3 | 17 |  |  |  |  |  |  |
| MWH06-10289 |  | COLO-2 Cell2 Rearrange Roxtec blocks per coordination layout (delete) |  | 0d | 2021-05-30 A | 2021-05-30 A | MWH06-9936 | 100% | 2021-06-01 | 2021-06-01 |  | 2 | 1 | 2 | 3 | 17 |  |  |  |  |  |  |
| MWH06-10290 |  | COLO2 CELL2 Interior MER conduit installation utility side(delete) |  | 0d | 2021-05-30 A | 2021-05-30 A | MWH06-10292 | 100% | 2021-06-01 | 2021-06-01 |  | 1 |  | 2 |  | 17 |  |  |  |  |  |  |
| MWH06-10292 |  | SE directs VECA to start Roxtec fixes(delete) | milestone | 0d | 2021-05-30 A | 2021-05-30 A | MWH06-9936 | 100% | 2021-06-01 | 2021-06-01 |  | 1 |  | 2 |  | 17 |  |  |  |  |  |  |
| MWH06.C1.C1380 |  | Toilet Piping Installation / DW |  | 12d | 2021-06-01 A | 2021-06-01 A |  | 100% | 2021-06-30 | 2021-07-15 |  | 1 |  | 1 | 4 |  | 1065 | 1 | 51 | 1C | 4 | 11 |
| MWH06.C1.C2360 |  | Toilet Piping Installation / DW |  | 12d | 2021-06-01 A | 2021-06-01 A |  | 100% | 2021-06-30 | 2021-07-15 |  | 1 |  | 2 | 4 |  | 1089 | 1 | 51 | 1C | 4 | 11 |
| MWH06.C1.C3440 |  | Toilet Piping Installation / DW |  | 12d | 2021-06-01 A | 2021-06-01 A |  | 100% | 2021-06-30 | 2021-07-15 |  | 1 |  | 3 | 4 |  | 1076 | 1 | 51 | 1C | 4 | 11 |
| MWH06.C1.C4430 |  | Toilet Piping Installation / DW |  | 12d | 2021-06-01 A | 2021-06-01 A |  | 100% | 2021-06-30 | 2021-07-15 |  | 1 |  | 4 | 4 |  | 103 | 1 | 51 | 1C | 4 | 11 |
| MWH06-10073 |  | Garco Steel (Mezz steel, Yard) - Create Punch list |  | 2d | 2021-07-30 A | 2021-07-30 A | MWH06.C4.C1280, MWH06.C4.C1080, MWH06.C4.C3080, MWH06.C4.C3260, MWH06.C4.C2280, MWH06.C4.C2080, MWH06.C4.C4260, MWH06.C4.C4080, MWH06-10530 | 100% | 2021-07-31 | 2021-08-02 |  |  |  |  |  |  |  |  |  |  |  |  |
| MWH06-10074 |  | Garco Steel (Mezz steel, Yard) - Complete Punch List |  | 6d | 2021-07-30 A | 2021-07-30 A | MWH06-10073 FF, MWH06-10073, MWH06-10530 | 100% | 2021-08-03 | 2021-08-09 |  |  |  |  |  |  |  |  |  |  |  |  |
| MWH06-10077 |  | Advantage - Create Punch list |  | 2d | 2021-07-30 A | 2021-07-30 A | MWH06-9731 FF, MWH06-9731, MWH06-9728, MWH06-10530 | 100% | 2021-07-31 | 2021-08-02 | start on or after 2021-02-08 |  |  |  |  |  |  |  |  |  |  |  |
| MWH06-10078 |  | Advantage - Complete Punch List |  | 6d | 2021-07-30 A | 2021-07-30 A | MWH06-10077, MWH06-10530 | 100% | 2021-08-03 | 2021-08-09 |  |  |  |  |  |  |  |  |  |  |  |  |
| MWH06-10079 |  | PCI - Create Punch list |  | 2d | 2021-07-30 A | 2021-07-30 A | MWH06.C1.C4350, MWH06.C1.C2290, MWH06.C1.C1310, MWH06.C1.C3370, MWH06.C1.C4130, MWH06.C1.C4100, MWH06.C1.C4010, MWH06.C1.C4070, MWH06.C1.C2130, MWH06.C1.C2100, MWH06.C1.C2030, MWH06.C1.C2080, MWH06.C1.C3120, MWH06.C1.C3090, MWH06.C1.C3010, MWH06.C1.C3070, MWH06-9791, MWH06.C1.C1140, MWH06.C1.C1100, MWH06.C1.C1030, MWH06.C1.C1080, MWH06AD-1016, MWH06-9744, MWH06AD-1018, MWH06-10530 | 100% | 2021-07-31 | 2021-08-02 | start on or after 2021-02-08 |  |  |  |  |  |  |  |  |  |  |  |
| MWH06-10080 |  | PCI - Complete Punch List |  | 6d | 2021-07-30 A | 2021-07-30 A | MWH06-10079, MWH06-10530 | 100% | 2021-08-03 | 2021-08-09 |  |  |  |  |  |  |  |  |  |  |  |  |
| MWH06-10081 |  | VECA - Create Punch list |  | 2d | 2021-07-30 A | 2021-07-30 A | MWH06.C1.Cx3030, MWH06-10530 | 100% | 2021-09-07 | 2021-09-08 |  |  |  |  |  |  |  |  |  |  |  |  |
| MWH06-10082 |  | VECA - Complete Punch List |  | 6d | 2021-07-30 A | 2021-07-30 A | MWH06-10081, MWH06-10530 | 100% | 2021-09-09 | 2021-09-15 |  |  |  |  |  |  |  |  |  |  |  |  |
| MWH06-10083 |  | LINX - Create Punch list |  | 2d | 2021-07-30 A | 2021-07-30 A | MWH06.C1.Cx2100, MWH06.C1.Cx2040, MWH06.C1.Cx2070, MWH06.AD.Cx2010, MWH06.C1.Cx2020, MWH06-10530 | 100% | 2021-07-31 | 2021-08-02 |  |  |  |  |  |  |  |  |  |  |  |  |
| MWH06-10084 |  | LINX - Complete Punch List |  | 6d | 2021-07-30 A | 2021-07-30 A | MWH06-10083, MWH06-10530 | 100% | 2021-08-03 | 2021-08-09 |  |  |  |  |  |  |  |  |  |  |  |  |
| MWH06-10085 |  | Convergent - Create Punch list |  | 2d | 2021-07-30 A | 2021-07-30 A | MWH06.C1.C4310, MWH06.C1.C2330, MWH06.C1.C3320, MWH06.C1.C1350, MWH06-10530 | 100% | 2021-07-31 | 2021-08-02 |  |  |  |  |  |  |  |  |  |  |  |  |
| MWH06-10086 |  | Convergent - Complete Punch List |  | 6d | 2021-07-30 A | 2021-07-30 A | MWH06-10085, MWH06-10530 | 100% | 2021-08-03 | 2021-08-09 |  |  |  |  |  |  |  |  |  |  |  |  |
| MWH06-10087 |  | TCM- Create Punch list |  | 2d | 2021-07-30 A | 2021-07-30 A | MWH06.C1.Cx3000, MWH06-10530 | 100% | 2021-07-31 | 2021-08-02 |  |  |  |  |  |  |  |  |  |  |  |  |
| MWH06-10088 |  | TCM - Complete Punch List |  | 6d | 2021-07-30 A | 2021-07-30 A | MWH06-10087, MWH06-10530 | 100% | 2021-08-03 | 2021-08-09 |  |  |  |  |  |  |  |  |  |  |  |  |
| MWH06-10091 |  | Submit GC Punch List to A/E |  | 1d | 2021-07-30 A | 2021-07-30 A | MWH-06-01-FIR-F, MWH-06-01-EPMS-F, MWH06.C1.Cx3040, MWH06-10086, MWH06-10090, MWH06-10082, MWH06-10088, MWH06-10080, MWH06-10084, MWH06-10530 | 100% | 2021-09-21 | 2021-09-21 |  |  |  |  |  |  |  |  |  |  |  |  |
| MWH06-10092 |  | A/E & Owner-Rep Punchlist Walk |  | 6d | 2021-07-30 A | 2021-07-30 A | MWH06-10091, MWH06-10530 | 100% | 2021-09-22 | 2021-09-29 |  |  |  |  |  |  |  |  |  |  |  |  |
| MWH06-10093 |  | Complete A/E Punchlist |  | 12d | 2021-07-30 A | 2021-07-30 A | MWH06-10092, MWH06-10530 | 100% | 2021-09-30 | 2021-10-13 |  |  |  |  |  |  |  |  |  |  |  |  |
| MWH06-10094 |  | PCI - Create Punch list |  | 2d | 2021-07-30 A | 2021-07-30 A | MWH06.C2.C4300, MWH06.C2.C4080, MWH06.C2.C4180, MWH06.C2.C4150, MWH06.C2.C2300, MWH06.C2.C2080, MWH06.C2.C2190, MWH06.C2.C2140, MWH06.C2.C3350, MWH06.C2.C3100, MWH06.C2.C3240, MWH06.C2.C3190, MWH06.C2.C1310, MWH06.C2.C1100, MWH06.C2.C1200, MWH06.C2.C1160, MWH06.C2.C4110, MWH06.C2.C4090, MWH06.C2.C4020, MWH06.C2.C4070, MWH06.C2.C2120, MWH06.C2.C2100, MWH06.C2.C2040, MWH06.C2.C2070, MWH06.C2.C3130, MWH06.C2.C3110, MWH06.C2.C3030, MWH06.C2.C3090, MWH06.C2.C1140, MWH06.C2.C1110, MWH06.C2.C1050, MWH06.C2.C1090, MWH06-10530 | 100% | 2021-07-31 | 2021-08-02 |  |  |  |  |  |  |  |  |  |  |  |  |
| MWH06-10095 |  | PCI - Complete Punch List |  | 6d | 2021-07-30 A | 2021-07-30 A | MWH06-10094, MWH06-10530 | 100% | 2021-08-03 | 2021-08-09 |  |  |  |  |  |  |  |  |  |  |  |  |
| MWH06-10096 |  | VECA - Create Punch list |  | 2d | 2021-07-30 A | 2021-07-30 A | MWH06.C2.Cx3030, MWH06-10530 | 100% | 2021-10-29 | 2021-10-30 |  |  |  |  |  |  |  |  |  |  |  |  |
| MWH06-10097 |  | VECA - Complete Punch List |  | 6d | 2021-07-30 A | 2021-07-30 A | MWH06-10096, MWH06-10530 | 100% | 2021-11-01 | 2021-11-08 |  |  |  |  |  |  |  |  |  |  |  |  |
| MWH06-10098 |  | LINX - Create Punch list |  | 2d | 2021-07-30 A | 2021-07-30 A | MWH06.C2.Cx2070, MWH06.C2.Cx2020, MWH06.C2.Cx2100, MWH06.C2.Cx2040, MWH06-10530 | 100% | 2021-08-16 | 2021-08-17 |  |  |  |  |  |  |  |  |  |  |  |  |
| MWH06-10099 |  | LINX - Complete Punch List |  | 6d | 2021-07-30 A | 2021-07-30 A | MWH06-10098, MWH06-10530 | 100% | 2021-08-18 | 2021-08-24 |  |  |  |  |  |  |  |  |  |  |  |  |
| MWH06-10100 |  | Convergent - Create Punch list |  | 2d | 2021-07-30 A | 2021-07-30 A | MWH06-10530 | 100% | 2021-07-31 | 2021-08-02 |  |  |  |  |  |  |  |  |  |  |  |  |
| MWH06-10101 |  | Convergent - Complete Punch List |  | 6d | 2021-07-30 A | 2021-07-30 A | MWH06-10100, MWH06-10530 | 100% | 2021-08-03 | 2021-08-09 |  |  |  |  |  |  |  |  |  |  |  |  |
| MWH06-10102 |  | TCM- Create Punch list |  | 2d | 2021-07-30 A | 2021-07-30 A | MWH06.C2.Cx3000, MWH06-10530 | 100% | 2021-09-22 | 2021-09-23 |  |  |  |  |  |  |  |  |  |  |  |  |
| MWH06-10103 |  | TCM - Complete Punch List |  | 6d | 2021-07-30 A | 2021-07-30 A | MWH06-10102, MWH06-10530 | 100% | 2021-09-24 | 2021-10-01 |  |  |  |  |  |  |  |  |  |  |  |  |
| MWH06-10104 |  | Cascade- Create Punch list |  | 2d | 2021-07-30 A | 2021-07-30 A | MWH06.C2.C1170, MWH06-10530 | 100% | 2021-07-31 | 2021-08-02 | start on or after 2021-01-13 |  |  |  |  |  |  |  |  |  |  |  |
| MWH06-10105 |  | Cascade - Complete Punch List |  | 6d | 2021-07-30 A | 2021-07-30 A | MWH06-10104, MWH06.C2.C1190, MWH06.C2.C3180, MWH06.C2.C2230, MWH06.C2.C4100, MWH06.C2.C1220, MWH06.C2.C1170, MWH06.C2.C3200, MWH06.C2.C2210, MWH06.C2.C4160, MWH06.C2.C1240, MWH06.C2.C3220, MWH06.C2.C2240, MWH06.C2.C4200, MWH06-10530 | 100% | 2021-08-03 | 2021-08-09 |  |  |  |  |  |  |  |  |  |  |  |  |
| MWH06-10106 |  | Submit GC Punch List to A/E |  | 1d | 2021-07-30 A | 2021-07-30 A | MWH06-10101, MWH06-10105, MWH06-10097, MWH06-10103, MWH06-10095, MWH06-10099, MWH06-10530 | 100% | 2021-11-09 | 2021-11-09 |  |  |  |  |  |  |  |  |  |  |  |  |
| MWH06-10107 |  | A/E & Owner-Rep Punchlist Walk |  | 6d | 2021-07-30 A | 2021-07-30 A | MWH06-10106, MWH06-10530 | 100% | 2021-11-10 | 2021-11-16 |  |  |  |  |  |  |  |  |  |  |  |  |
| MWH06-10108 |  | Complete A/E Punchlist |  | 12d | 2021-07-30 A | 2021-07-30 A | MWH06-10107, MWH06-10530 | 100% | 2021-11-17 | 2021-12-03 |  |  |  |  |  |  |  |  |  |  |  |  |
| MWH06-10109 |  | PCI - Create Punch list |  | 2d | 2021-07-30 A | 2021-07-30 A | MWH06.C3.C4200, MWH06-9765, MWH06.C3.C4150, MWH06.C3.C4110, MWH06.C3.C4030, MWH06.C3.C2200, MWH06-9764, MWH06.C3.C2120, MWH06.C3.C2030, MWH06.C3.C2070, MWH06.C3.C3160, MWH06-9763, MWH06.C3.C3120, MWH06.C3.C3090, MWH06.C3.C3030, MWH06.C3.C1250, MWH06-9762, MWH06.C3.C1120, MWH06.C3.C1030, MWH06.C3.C1070, MWH06.C3.C4260, MWH06.C3.C4220, MWH06.C3.C4230, MWH06.C3.C4060, MWH06.C3.C2270, MWH06.C3.C2250, MWH06.C3.C2090, MWH06.C3.C2240, MWH06.C3.C3240, MWH06.C3.C3180, MWH06.C3.C3190, MWH06.C3.C3060, MWH06.C3.C1260, MWH06.C3.C1220, MWH06.C3.C1090, MWH06.C3.C1210, MWH06-10530 | 100% | 2021-07-31 | 2021-08-02 |  |  |  |  |  |  |  |  |  |  |  |  |
| MWH06-10110 |  | PCI - Complete Punch List |  | 6d | 2021-07-30 A | 2021-07-30 A | MWH06-10109, MWH06-10530 | 100% | 2021-08-03 | 2021-08-09 |  |  |  |  |  |  |  |  |  |  |  |  |
| MWH06-10111 |  | VECA - Create Punch list |  | 2d | 2021-07-30 A | 2021-07-30 A | MWH06.C3.Cx3030, MWH06-10530 | 100% | 2021-12-14 | 2021-12-15 |  |  |  |  |  |  |  |  |  |  |  |  |
| MWH06-10112 |  | VECA - Complete Punch List |  | 6d | 2021-07-30 A | 2021-07-30 A | MWH06-10111, MWH06-10530 | 100% | 2021-12-16 | 2021-12-23 |  |  |  |  |  |  |  |  |  |  |  |  |
| MWH06-10113 |  | LINX - Create Punch list |  | 2d | 2021-07-30 A | 2021-07-30 A | MWH06.C3.Cx2100, MWH06.C3.Cx2040, MWH06.C3.Cx2080, MWH06.C3.Cx2020, MWH06-10530 | 100% | 2021-10-13 | 2021-10-14 |  |  |  |  |  |  |  |  |  |  |  |  |
| MWH06-10114 |  | LINX - Complete Punch List |  | 6d | 2021-07-30 A | 2021-07-30 A | MWH06-10113, MWH06-10530 | 100% | 2021-10-15 | 2021-10-22 |  |  |  |  |  |  |  |  |  |  |  |  |
| MWH06-10115 |  | Convergent - Create Punch list |  | 2d | 2021-07-30 A | 2021-07-30 A | MWH06-10530 | 100% | 2021-07-31 | 2021-08-02 |  |  |  |  |  |  |  |  |  |  |  |  |
| MWH06-10116 |  | Convergent - Complete Punch List |  | 6d | 2021-07-30 A | 2021-07-30 A | MWH06-10115, MWH06-10530 | 100% | 2021-08-03 | 2021-08-09 |  |  |  |  |  |  |  |  |  |  |  |  |
| MWH06-10117 |  | TCM- Create Punch list |  | 2d | 2021-07-30 A | 2021-07-30 A | MWH06.C2.Cx3000, MWH06-10530 | 100% | 2021-09-22 | 2021-09-23 |  |  |  |  |  |  |  |  |  |  |  |  |
| MWH06-10118 |  | TCM - Complete Punch List |  | 6d | 2021-07-30 A | 2021-07-30 A | MWH06-10117, MWH06-10530 | 100% | 2021-09-24 | 2021-10-01 |  |  |  |  |  |  |  |  |  |  |  |  |
| MWH06-10119 |  | Cascade- Create Punch list |  | 2d | 2021-07-30 A | 2021-07-30 A | MWH06.C3.C1080, MWH06-10530 | 100% | 2021-07-31 | 2021-08-02 |  |  |  |  |  |  |  |  |  |  |  |  |
| MWH06-10120 |  | Cascade - Complete Punch List |  | 6d | 2021-07-30 A | 2021-07-30 A | MWH06-10119, MWH06-10530 | 100% | 2021-08-03 | 2021-08-09 |  |  |  |  |  |  |  |  |  |  |  |  |
| MWH06-10121 |  | Submit GC Punch List to A/E |  | 1d | 2021-07-30 A | 2021-07-30 A | MWH06-10116, MWH06-10120, MWH06-10112, MWH06-10118, MWH06-10110, MWH06-10114, MWH06-10530 | 100% | 2021-12-27 | 2021-12-27 |  |  |  |  |  |  |  |  |  |  |  |  |
| MWH06-10122 |  | A/E & Owner-Rep Punchlist Walk |  | 6d | 2021-07-30 A | 2021-07-30 A | MWH06-10121, MWH06-10530 | 100% | 2021-12-28 | 2022-01-05 |  |  |  |  |  |  |  |  |  |  |  |  |
| MWH06-10123 |  | Complete A/E Punchlist |  | 12d | 2021-07-30 A | 2021-07-30 A | MWH06-10122, MWH06-10530 | 100% | 2022-01-06 | 2022-01-20 |  |  |  |  |  |  |  |  |  |  |  |  |
| MWH06-10124 |  | PCI - Create Punch list |  | 0d | 2021-07-30 A | 2021-07-30 A | MWH06.C4.C3240, MWH06.C4.C3220, MWH06.C4.C1200, MWH06.C4.C1260, MWH06.C4.C2200, MWH06.C4.C2250, MWH06.C4.C4230, MWH06.C4.C4210, MWH06-10530 | 100% | 2021-07-31 | 2021-07-31 |  |  |  |  |  |  |  |  |  |  |  |  |
| MWH06-10125 |  | PCI - Complete Punch List |  | 6d | 2021-07-30 A | 2021-07-30 A | MWH06-10124, MWH06-10530 | 100% | 2021-07-31 | 2021-08-06 |  |  |  |  |  |  |  |  |  |  |  |  |
| MWH06-10126 |  | VECA - Create Punch list |  | 2d | 2021-07-30 A | 2021-07-30 A | MWH06.C4.Cx3030, MWH06-10530 | 100% | 2022-01-28 | 2022-01-31 |  |  |  |  |  |  |  |  |  |  |  |  |
| MWH06-10127 |  | VECA - Complete Punch List |  | 6d | 2021-07-30 A | 2021-07-30 A | MWH06-10126, MWH06-10530 | 100% | 2022-02-01 | 2022-02-07 |  |  |  |  |  |  |  |  |  |  |  |  |
| MWH06-10128 |  | LINX - Create Punch list |  | 2d | 2021-07-30 A | 2021-07-30 A | MWH06.C4.Cx2110, MWH06.C4.Cx2040, MWH06.C4.Cx2080, MWH06.C4.Cx2020, MWH06-10530 | 100% | 2021-11-19 | 2021-11-20 |  |  |  |  |  |  |  |  |  |  |  |  |
| MWH06-10129 |  | LINX - Complete Punch List |  | 6d | 2021-07-30 A | 2021-07-30 A | MWH06.C4.Cx2110, MWH06.C4.Cx2040, MWH06.C4.Cx2080, MWH06.C4.Cx2020, MWH06-10128, MWH06-10530 | 100% | 2021-11-22 | 2021-12-01 |  |  |  |  |  |  |  |  |  |  |  |  |

| ID | Activity | Duration | Start | Finish | Predecessors | Complete | Planned start | Planned finish |
| --- | --- | --- | --- | --- | --- | --- | --- | --- |
| MWH06-10130 | Convergent - Create Punch list | 2d | 2021-07-30 A | 2021-07-30 A | MWH06-10530 | 100% | 2021-07-31 | 2021-08-02 |
| MWH06-10131 | Convergent - Complete Punch List | 6d | 2021-07-30 A | 2021-07-30 A | MWH06-10130, MWH06-10530 | 100% | 2021-08-03 | 2021-08-09 |
| MWH06-10132 | TCM- Create Punch list | 2d | 2021-07-30 A | 2021-07-30 A | MWH06.C3.Cx3000, MWH06-10530 | 100% | 2021-11-04 | 2021-11-05 |
| MWH06-10133 | TCM - Complete Punch List | 6d | 2021-07-30 A | 2021-07-30 A | MWH06-10132, MWH06-10530 | 100% | 2021-11-08 | 2021-11-13 |
| MWH06-10134 | Cascade- Create Punch list | 2d | 2021-07-30 A | 2021-07-30 A | MWH06.C4.C1050, MWH06-10530 | 100% | 2021-07-31 | 2021-08-02 |
| MWH06-10135 | Cascade - Complete Punch List | 6d | 2021-07-30 A | 2021-07-30 A | MWH06-10134, MWH06-10530 | 100% | 2021-08-03 | 2021-08-09 |
| MWH06-10136 | Submit GC Punch List to A/E | 1d | 2021-07-30 A | 2021-07-30 A | MWH06-10135, MWH06-10127, MWH06-10133, MWH06-10125, MWH06-10129, MWH06-10072, MWH06-10076, MWH06-10078, MWH06-10074, MWH06-10530 | 100% | 2022-02-08 | 2022-02-08 |
| MWH06-10137 | A/E & Owner-Rep Punchlist Walk | 6d | 2021-07-30 A | 2021-07-30 A | MWH06-10136, MWH06-10530 | 100% | 2022-02-09 | 2022-02-15 |
| MWH06-10138 | Complete A/E Punchlist | 12d | 2021-07-30 A | 2021-07-30 A | MWH06-10137, MWH06-10093, MWH06-10108, MWH06-10123, MWH06-10131, MWH06-10530 | 100% | 2022-02-16 | 2022-03-01 |

## Activity codes

| Code | Value | Meaning |
| --- | --- | --- |
| CELL | 1 | CELL 1 |
| CELL | 2 | CELL 2 |
| CELL | 3 | CELL 3 |
| CELL | 4 | CELL 4 |
| CELL | All | All Cells |
| CELL | CS | Core/Shell |
| CELL | Cx-3 | Cx- Lvl-3 |
| CELL | Cx-4 | Cx- Lvl-4 |
| COLO | 0 | General Fit Out |
| COLO | 1 | COLO 1 |
| COLO | 2 | COLO 2 |
| COLO | 3 | COLO 3 |
| COLO | 4 | COLO 4 |
| COLO | A | ADMIN |
| COLO | S | Site |
| COLO CRITICAL | 1 | COLO-1 |
| COLO CRITICAL | 2,3,4 | COLO-2,3,4 |
| CRITICAL PATH-3 | CP-1 | SHELL |
| CRITICAL PATH-3 | CP-2 | (New Code Value) |
| CRITICAL PATH-3 | CP-3 | MER ROJ |
| Critical Path | (New) | Delivery |
| Critical Path | (New)-1 | Set-up |
| Critical Path | 2 | PEMB |
| Critical Path | 3 | Concrete |
| Critical Path | 4 | Site |
| Critical Path | 6 | Mechanical Equipment |
| Critical Path | Cx | Systems Buildout and Cx |
| Critical Path mer to COLO | 1 | COLO-1 |
| Critical Path mer to COLO | 2 | COLO-2 |
| Critical Path mer to COLO | 3 | COLO-3 |
| Critical Path mer to COLO | 4 | COLO-4 |
| Critical Path-1 | 1 | Critical Path Thru Phase-1C Funding |
| Critical Path-1 | 2 | Critical Path Thru MER Delivery |
| Critical Path-2 | 1 | Critical Path DRB#1 |
| Critical Path-2 | 2 | Critical Path MER |
| DELAY | 1 | Delay #1- Late Submital Review - URS/ UMS |
| DELAY | 10 | Delay#10 COVID Procurement Delay |
| DELAY | 11 | Delay#11 MWH02 -Telecom Vault Tie-in MSOW Delay |
| DELAY | 12 | Delay#12 Late UMS Delivery |
| DELAY | 13 | Delay#13 Gen Delivery Delay |
| DELAY | 14 | Delay#14 Weather |
| DELAY | 15 | Delay#15 WA State L&I MER Onsite Inspection Delay Due to Covid-19 |
| DELAY | 16 | Delay#16 NOPC-8 SE - Missing MER Raceways |
| DELAY | 17 | Delay#17 NOPC-9- SE MER Roxtec Raceway Fixes |
| DELAY | 19 | Delay#19 NOPC-11 Failed Starline Busway Hangers |
| DELAY | 2 | Delay #2 - Late UPM deliveries |
| DELAY | 20 | Delay#20 Admin Gen Missing Bussing |
| DELAY | 3 | Delay #3 - Added Wire/Devices for Fluid Cooler |
| DELAY | 4 | Delay #4 - DRB#2 |
| DELAY | 5 | Delay #5 - Water treatment Skids procurement |
| DELAY | 6 | Delay #6 - DRB#3 |
| DELAY | 7 | Delay#7- Force Majeure Shutdown -Hazardous Air Quality Index |
| DELAY | 8 | Delay #8-Underground Utilities impactted by Overhead Power lines |
| DELAY | 9 | Delay#9- MER Delivery Delay |
| Discipline | CONC | Concrete |
| Equipment Deliveries | 2 | MSFT Deliveriries |
| HOT ITEMS | 1 | UPM to URS |
| HOT ITEMS | 2 | UPM to UMS |
| HOT ITEMS | 4 | Lighting Construction activities |
| HOT ITEMS | 5 | Underground Construction Activities |
| HOT ITEMS | A | Critical Path |
| HRA - Required Permit- Priority-1 | 1 | Ground Disturbance |
| HRA - Required Permit- Priority-1 | 11 | Infectious diseases |
| HRA - Required Permit- Priority-1 | 3 | Elevated Work |
| HRA - Required Permit- Priority-1 | 4 | Material Handling |
| HRA - Required Permit- Priority-1 | 5 | Cranes and Suspended Loads |
| HRA - Required Permit- Priority-1 | 6 | Work on/near Energized utilities |
| HRA - Required Permit- Priority-1 | 7 | Confined Spaces |
| HRA - Required Permit- Priority-1 | 8 | Heavy Equipment Operations |
| HRA - Required Permit- Priority-2 | 11 | Infectious diseases |
| HRA - Required Permit- Priority-2 | 2 | Steel Erection |
| HRA - Required Permit- Priority-2 | 3 | Elevated Work |
| HRA - Required Permit- Priority-2 | 4 | Material Handling |
| HRA - Required Permit- Priority-2 | 7 | Confined Spaces |
| HRA - Required Permit- Priority-2 | 8 | Heavy Equipment Operations |
| HRA - Safety Level | 1 | LOW Risk Activities |
| HRA - Safety Level | 2 | MID Risk Activities |
| HRA - Safety Level | 3 | HIGH Risk Activities |
| HRA - Safety Level | 4 | Critical Risk Activities |
| MER | 1 | Pads |
| MER | 2 | Pads Ready to Set MERS |
| MER | 3 | MSFT- MER ROJ |
| MER | 4 | CLAYCO with MSFT ROJ |
| MER | 5 | Level -3 |
| MSFT-Funding Releases | 1A | Phase 1A - Funding Release |
| MSFT-Funding Releases | 1B | Phase 1B - Funding Release |
| MSFT-Funding Releases | 1C | Phase 1C - Funding Release |
| MSFT-Funding Releases | 2 | Phase 2 - Funding Release |
| MV CREW | 1 | Vaults and Duct Bank |
| MV CREW | 2-1 | Pull wire CREW-1 |
| MV CREW | 2-2 | Pull wire Crew-2 |
| MV CREW | 2-3 | Pull wire Crew -3 |
| MV CREW | 3-1 | Terminate- MV |
| MV CREW | 3-2 | Terminate- LV |
| MWH06- TRADES | 22 | DIVISION 22 |
| MWH06- TRADES | 23 | DIVISION 23 |
| MWH06- TRADES | 26 | DIVISION 26 |
| MWH06- TRADES | 27 | DIVISION 27 |
| MWH06- TRADES | 3 | DIVISION 3 |
| MWH06- TRADES | MER | CRITICAL PATH MER |
| Q-Colo | 01 | COLO 1 |
| Q-General Area | N | North |
| STEEL ERECTION CRITICAL | 1 | PEMB STEEL- PROCURMENT |
| STEEL ERECTION CRITICAL | 2 | BIM |
| STEEL ERECTION CRITICAL | 3 | FOUNDATION |
| STEEL ERECTION CRITICAL | 3.1 | UNDERGROUND UTILITIES |
| STEEL ERECTION CRITICAL | 4 | STEEL ERECTION |
| STEEL ERECTION CRITICAL | 5 | over all project milestones |
| TRADE | 1 | Advantage |
| TRADE | 2 | CSI |
| TRADE | 3 | Sure Steel |
| TRADE | 4 | VECA |
| TRADE | 51 | TCM |
| TRADE | 6 | PCI |
| TRADE | 7 | LINX |
| VECA- Changed | 1 | In progress |
| VECA- Changed | 2 | Completed |
| WBS | 1 | Interior Buildout - DATA HALL |
| WBS | 2 | Interior Buildout Mechanical Corridor |
| WBS | 3 | Systems Buildout Exterior Equipment Yard |
| WBS | 4 | Systems Buildout- Mechanical Corridor |
| WBS | 5 | Systems Buildout- Data Hall |
| WBS | 6 | Cx-Lvl-2 |
| WBS | 7 | Cx-Lvl-3 |
| WBS | A | SITE |
| WBS | B | Core and Shell |
