# 826 As-built Programme

Schedule from Primavera P6, 2010-03-10 to 2017-04-01, data date 2016-12-01, A marks actual dates.
As-built programme is using the Best Achievable Programme P6 / file with data date as of 2-Jul-16 from the Contractor's Monthly / Progress Report.

## Calendars

- 826-7 days w/o holidays-1: Mon-Sun 07:00-17:00.
- 826-7 days w/o holidays: Mon-Sun 07:00-17:00.

## Resources

| Resource | Group | Unit |
| --- | --- | --- |
| Temporary Works Steelworker | labor |  |
| MEP Installation Labour | labor |  |
| General Civil Engineering Labour | labor |  |
| Concrete Construction Labour | labor |  |
| STP Support Ground Level Labour | labor |  |
| TBM Back Up and Support Labour | labor |  |
| Probing & Grouting Labour | labor |  |
| Drilling and Grouting Labour | labor |  |
| TBM Operators | labor |  |
| TBM Ground Level Labour | labor |  |
| Temporary Works Steel | material | t |
| Tunnel Segment Labour (Installation) | labor |  |
| Excavated Materials | material | m3 |
| Tunnel Segment Rings (Installation) | material | NO |
| Freeze Plant Support Labour | labor |  |
| Ground Freezing Labour, at the face | labor |  |
| Excavation and backfilling labour | labor |  |
| Grade 20 Lean Mix Concrete | material | m3 |
| Grade 40 Concrete | material | m3 |
| Formwork | material | m2 |
| Reinforceing steel | material | t |
| Structural Steel | material | t |
| Grade 30 Concrete | material | m3 |
| Tunnel Segment Labour (Production) | labor |  |
| Tunnel Segment Rings (Production) | material | NO |

## Schedule

| ID | WBS | Activity | Type | Duration | Start | Finish | Predecessors | Complete | Planned start | Planned finish | Total float | Calendar | SAe Task Tag | CONTRACTS | COST CENTRE | 826_As-built | 826_As-built_verified | user_text1 | user_text5 |
| --- | --- | --- | --- | --- | --- | --- | --- | --- | --- | --- | --- | --- | --- | --- | --- | --- | --- | --- | --- |
|  | 826-MP-PU0 | **826 - HGP to Mai Po Tunnels, Revised Master Prog** |  |  | 2010-03-10 | 2017-04-01 |  |  |  |  |  |  |  |  |  |  |  |  |  |
|  | 1 | **Tender and Contract Details** |  |  | 2010-03-10 | 2017-04-01 |  |  |  |  |  |  |  |  |  |  |  |  |  |
|  | 1 | **Tender Actions** |  |  | 2010-03-10 | 2010-03-10 |  |  |  |  |  |  |  |  |  |  |  |  |  |
| 8260KD0010 |  | Contract Award (LoA) | milestone | 0d | 2010-03-10 A | 2010-03-10 A |  | 100% |  |  |  |  | 1 | 826 | A | 826_AB |  |  |  |
|  | 2 | **Critical Contract Dates** |  |  | 2010-03-15 | 2017-04-01 |  |  |  |  |  |  |  |  |  |  |  |  |  |
| 8260KD0020 |  | Stated Contract Commencement Date (Cl 64) | milestone | 0d | 2010-03-15 A | 2010-03-15 A | 8260KD0010 | 100% |  |  |  |  | 2 | 826 | A | 826_AB | 826_ABV |  |  |
| 8260KD0030 |  | Table 3, Ref 3A - Delivery of the first TBM to HGP | milestone | 0d | 2011-05-29 A | 2011-05-29 A | 8260PRTBM140 | 100% | 2011-05-30 | 2011-05-30 |  |  | 2 | 826 | A | 826_AB | 826_ABV |  |  |
| 8260KD0050 |  | Table 3, Ref 3C - Delivery of the second TBM to HGP | milestone | 0d | 2012-04-22 A | 2012-04-22 A | 8260PRTBM240 | 100% | 2012-05-01 | 2012-05-01 |  |  |  | 826 | A | 826_AB | 826_ABV |  |  |
| 8260KD0060 |  | Table 4, Ref 4A - Achieve Deg. 1 for both Up and Down Track Tunnels | milestone | 0d | 2016-03-31 A | 2016-03-31 A | 8260CRinsp010 | 100% |  |  |  |  | 2 | 826 | A | 826_AB | 826_ABV | 0428 |  |
| 8260KD0040 |  | Table 3, Ref 3B - All works in Works Area 1.6 | milestone | 0d | 2016-07-11 A | 2016-07-11 A | 8260KD0060 | 100% | 2016-12-01 | 2016-12-01 |  |  | 2 | 826 | A | 826_AB | 826_ABV |  | check |
| 8260KD0070 |  | Table 1 - Completion of the Whole of the Works (wk13/2015) | milestone | 0d | 2016-11-30 A | 2016-11-30 A | 8260HO0020 FF, 8260HO0100, 8260SWTDn0290, 8260MSD0260, 8260HO0010, 8260HO0030, 8260MSA0160, 8260SWTDn0280, 8260HO0040, 8260IF830001, 8260CPSM0050, 8260HO0080, 8260HO0090, 8260MSE0430, 8260HO0060, 8260HO0070, 8260IF825008, 8260MSC0330, 8260CRinsp050, 8260CPSM0040 | 100% | 2017-06-01 | 2017-06-01 |  |  | 2 | 826 | A | 826_AB | 826_ABV |  |  |
|  | 1 | **Other Programme Data** |  |  | 2013-11-27 | 2017-04-01 |  |  |  |  |  |  |  |  |  |  |  |  |  |
| 8260PD0010 |  | GSG Contractor to hand over S623 to Cont' 826 at HK Boundary | milestone | 0d | 2013-11-27 A | 2013-11-27 A | 8260IFGS44 | 100% | 2013-12-01 | 2013-12-01 |  |  | 2 | 826 | A | 826_AB | 826_ABV |  |  |
| 8260PD0020 |  | GSG Contractor to hand over S624 to Cont' 826 at HK Boundary | milestone | 0d | 2014-03-12 A | 2014-03-12 A | 8260IFGS92 | 100% | 2013-05-09 | 2013-05-09 |  |  | 2 | 826 | A | 826_AB | 826_ABV |  |  |
| 8260PD0040 |  | Provision of TBM Retrieval Shaft at MPV | milestone | 0d | 2014-05-30 A | 2014-05-30 A | 8260KD0010 FS+1348d | 100% | 2014-10-01 | 2014-10-01 |  |  | 2 | 826 | A |  |  |  |  |
| 8260PD0030 |  | Notification to Contract 846 for cable bracket installation | milestone | 0d | 2015-03-12 A | 2015-03-12 A | 8260SWTDn0175 | 100% | 2015-11-22 | 2015-11-22 |  |  |  |  | A |  |  |  |  |
| 8260PD0050 |  | OHL Power On, by Designated Contractor 830 | milestone | 0d | 2017-04-01 | 2017-04-01 | 8260SWFDn0175, 8260SWFDn0170 |  |  |  | 0d |  | 2 | 826 | A | 826_AB |  |  |  |
|  | 2 | **Access Dates for Designated Contractors** |  |  | 2016-04-15 | 2016-12-01 |  |  |  |  |  |  |  |  |  |  |  |  |  |
| 8260IFDC0080 |  | 841A, Signalling System, Trackside Eqpt - Both tunnels | milestone | 0d | 2016-04-15 A | 2016-04-15 A | 8260CRinsp010 | 100% | 2016-06-01 | 2016-06-01 |  |  | 1 | 826 | A |  |  |  |  |
| 8260IFDC0070 |  | 830, Trackwork and OHL - Up-track | milestone | 0d | 2016-04-16 A | 2016-04-16 A | 8260CRinsp010 | 100% | 2016-05-01 | 2016-05-01 |  |  | 1 | 826 | A | 826_AB | 826_ABV |  |  |
| 8260IFDC0075 |  | 830, Trackwork and OHL - Down-track | milestone | 0d | 2016-04-29 A | 2016-04-29 A |  | 100% | 2016-06-01 | 2016-06-01 |  | 826-7 days w/o holidays |  |  |  | 826_AB | 826_ABV |  |  |
| 8260IFDC0050 |  | 827, X-passage Doors - Door Frame Installation | milestone | 0d | 2016-12-01 | 2016-12-01 | 8260CRinsp010, 8260IFDC0070 |  |  |  | 121d |  | 1 | 826 | A |  |  |  | check |
| 8260IFDC0060 |  | 827, X-passage Doors - Doors Installation | milestone | 0d | 2016-12-01 | 2016-12-01 | 8260CRinsp010, 8260IFDC0070 |  |  |  | 121d |  | 1 | 826 | A |  |  |  |  |
| 8260IFDC0090 |  | 846, Trackside Aux - Both tunnels for installation | milestone | 0d | 2016-12-01 | 2016-12-01 | 8260CRinsp010 |  |  |  | 121d |  | 1 | 826 | A |  |  |  | check |
| 8260IFDC0100 |  | 849, Radio Comms - Both tunnels for installation | milestone | 0d | 2016-12-01 | 2016-12-01 | 8260CRinsp010 |  |  |  | 121d |  | 1 | 826 | A |  |  |  |  |
| 8260IFDC0105 |  | 850, Passenger Mobile Communications Systems - Both tunnels | milestone | 0d | 2016-12-01 | 2016-12-01 | 8260CRinsp010 |  |  |  | 121d |  |  |  | A |  |  |  |  |
| 8260IFDC0110 |  | 851, Fixed Comms - Both tunnels for installation | milestone | 0d | 2016-12-01 | 2016-12-01 | 8260CRinsp010 |  |  |  | 121d |  | 1 | 826 | A |  |  |  |  |
| 8260IFDC0120 |  | 8203, Constrn Stage Mobile Phone Network - Both tunnels | milestone | 0d | 2016-12-01 | 2016-12-01 | 8260CRinsp010 |  |  |  | 121d |  | 1 | 826 | A |  |  |  | check |

| ID | WBS | Activity | Type | Duration | Start | Finish | Predecessors | Complete | Planned start | Planned finish | COST CENTRE |
| --- | --- | --- | --- | --- | --- | --- | --- | --- | --- | --- | --- |
|  | 3 | **Interface Contractor Programme - GSG** |  |  | 2010-12-01 | 2014-03-13 |  |  |  |  |  |
| 8260IFGS002 |  | Drill & Blast Tunnel (to HK) |  | 300d | 2010-12-01 A | 2012-03-31 A | 8260DS0285, 8260DS0335, 8260DS0415, 8260DS0325, 8260DS0355, 8260DS0405, 8260KD0010, 8260DS0295, 8260DS0305, 8260PG0070, 8260DS0345, 8260DS0385, 8260GI0070 | 100% | 2010-12-01 | 2011-09-27 | A |
| 8260IFGS001 |  | Complete Huanggang Park shaft construction | milestone | 0d | 2012-03-26 A | 2012-03-26 A | 8260KD0020 | 100% |  |  | A |
| 8260IFGS04 |  | S623 Excavate 242m (SZ) (s.rock) |  | 95d | 2012-07-03 A | 2012-10-06 A | 8260IFGS002, 8260PRMSC070, 8260PRTBM170, 8260IFGS001 FS-47d, 8260PW0250 | 100% |  |  | A |
| 8260IFGS06 |  | S623 Conduct General Maintenance |  | 3d | 2012-10-07 A | 2012-10-09 A | 8260IFGS04 | 100% | 2012-10-07 | 2012-10-10 | A |
| 8260IFGS08 |  | S623 Excavate 242m (SZ) (m.rock/total 484m) |  | 40d | 2012-10-10 A | 2012-12-16 A | 8260IFGS06 | 100% | 2012-10-10 | 2012-11-19 | A |
| 8260IFGS50 |  | S624 Excavate 100m (SZ) (s.rock) |  | 25d | 2012-11-05 A | 2012-12-18 A | 8260PRTBM270 | 100% | 2012-11-05 | 2012-11-30 | A |
| 8260IFGS10 |  | S623 Conduct General Maintenance |  | 4d | 2012-12-17 A | 2012-12-19 A | 8260IFGS08 | 100% | 2012-11-18 | 2012-11-22 | A |
| 8260IFGS52 |  | S624 Conduct General Maintenance |  | 3d | 2012-12-18 A | 2012-12-18 A | 8260IFGS50 | 100% | 2012-12-10 | 2012-12-13 | A |
| 8260IFGS54 |  | S624 Excavate 142m (SZ) (s.rock/total 242m) |  | 24d | 2012-12-19 A | 2013-01-11 A | 8260IFGS52 | 100% | 2012-12-13 | 2013-01-06 | A |
| 8260IFGS12 |  | S623 Excavate 220m (SZ) (s.rock/total 704m) |  | 37d | 2012-12-20 A | 2013-02-20 A | 8260IFGS10 | 100% | 2012-11-22 | 2012-12-29 | A |
| 8260IFGS56 |  | S624 Conduct General Maintenance |  | 3d | 2013-01-11 A | 2013-01-11 A | 8260IFGS54 | 100% | 2013-01-05 | 2013-01-08 | A |
| 8260IFGS58 |  | S624 Excavate 242m (SZ) (m.rock/total 484m) |  | 40d | 2013-01-12 A | 2013-03-01 A | 8260IFGS56 | 100% | 2013-01-08 | 2013-02-17 | A |
| 8260IFGS16 |  | S623 Conduct General Maintenance |  | 4d | 2013-02-20 A | 2013-02-20 A | 8260IFGS12 | 100% | 2013-01-08 | 2013-01-12 | A |
| 8260IFGS18 |  | S623 Excavate 150m (SZ) (m.rock/total 854m) |  | 25d | 2013-02-21 A | 2013-04-05 A | 8260IFGS16 | 100% | 2013-01-12 | 2013-02-06 | A |
| 8260IFGS60 |  | S624 Conduct General Maintenance |  | 4d | 2013-03-01 A | 2013-03-01 A | 8260IFGS58 | 100% | 2013-02-15 | 2013-02-19 | A |
| 8260IFGS62 |  | S624 Excavate 220m (SZ) (s.rock/total 704m) |  | 37d | 2013-03-02 A | 2013-05-05 A | 8260IFGS60 | 100% | 2013-02-19 | 2013-03-28 | A |
| 8260IFGS20 |  | S623 Conduct General Maintenance |  | 3d | 2013-04-05 A | 2013-04-05 A | 8260IFGS18 | 100% | 2013-02-20 | 2013-02-23 | A |
| 8260IFGS22 |  | S623 Excavate 50m (SZ) (s.rock/total 904m) |  | 8d | 2013-04-06 A | 2013-04-21 A | 8260IFGS20 | 100% | 2013-02-28 | 2013-03-08 | A |
| 8260IFGS24 |  | S623 Conduct General Maintenance |  | 1d | 2013-04-21 A | 2013-04-21 A | 8260IFGS22 | 100% | 2013-04-21 | 2013-04-22 | A |
| 8260IFGS26 |  | S623 Excavate 100m (SZ) (rock/total 1004m) |  | 17d | 2013-04-22 A | 2013-05-14 A | 8260IFGS24 | 100% | 2013-04-22 | 2013-05-09 | A |
| 8260IFGS64 |  | S624 Conduct General Maintenance |  | 3d | 2013-05-06 A | 2013-05-06 A | 8260IFGS62 | 100% | 2013-06-28 | 2013-07-01 | A |
| 8260IFGS66 |  | S624 Excavate 150m (SZ) (m.rock/total 854m) |  | 20d | 2013-05-07 A | 2013-07-20 A | 8260IFGS64 | 100% | 2013-07-02 | 2013-07-22 | A |
| 8260IFGS28 |  | S623 Conduct General Maintenance |  | 2d | 2013-05-14 A | 2013-05-14 A | 8260IFGS26 | 100% | 2013-06-08 | 2013-06-10 | A |
| 8260IFGS30 |  | S623 Excavate 470m (SZ) (rock/total 1474m) |  | 78d | 2013-05-15 A | 2013-09-12 A | 8260IFGS28 | 100% | 2013-05-15 | 2013-08-01 | A |
| 8260IFGS68 |  | S624 Conduct General Maintenance |  | 3d | 2013-07-21 A | 2013-07-23 A | 8260IFGS66 | 100% | 2013-07-24 | 2013-07-27 | A |
| 8260IFGS70 |  | S624 Excavate 50m (SZ) (s.rock/total 904m) |  | 8d | 2013-07-24 A | 2013-08-04 A | 8260IFGS68 | 100% | 2013-07-24 | 2013-08-01 | A |
| 8260IFGS72 |  | S624 Conduct General Maintenance |  | 1d | 2013-08-05 A | 2013-08-05 A | 8260IFGS70 | 100% | 2013-08-05 | 2013-08-06 | A |
| 8260IFGS74 |  | S624 Excavate 100m (SZ) (s/m.rock/total 1004m) |  | 17d | 2013-08-06 A | 2013-08-25 A | 8260IFGS72 | 100% | 2013-08-06 | 2013-08-23 | A |
| 8260IFGS76 |  | S624 Conduct General Maintenance |  | 18d | 2013-08-26 A | 2013-09-12 A | 8260IFGS74 | 100% | 2013-08-26 | 2013-09-13 | A |
| 8260IFGS32 |  | S623 Conduct General Maintenance |  | 2d | 2013-09-13 A | 2013-09-14 A | 8260IFGS30 | 100% | 2013-09-13 | 2013-09-15 | A |
| 8260IFGS78 |  | S624 Excavate 470m (SZ) (s/m.rock/total 1474m) |  | 79d | 2013-09-13 A | 2014-01-17 A | 8260IFGS76 | 100% | 2013-09-13 | 2013-12-01 | A |
| 8260IFGS34 |  | S623 Excavate 242m (SZ) (m.rock/total 1716m) |  | 41d | 2013-09-15 A | 2013-11-05 A | 8260IFGS32 | 100% | 2013-08-15 | 2013-09-25 | A |
| 8260IFGS42 |  | S623 Excavate 84m (SZ) (c.rock/total 1856m) |  | 2d | 2013-10-16 A | 2013-11-27 A | 8260IFGS40 | 100% | 2013-10-31 | 2013-11-02 | A |
| 8260IFGS36 |  | S623 Conduct General Maintenance |  | 19d | 2013-11-06 A | 2013-11-06 A | 8260IFGS34 | 100% | 2013-10-31 | 2013-11-19 | A |
| 8260IFGS38 |  | S623 Excavate 56m (SZ) (c.rock/total 1772m) |  | 10d | 2013-11-06 A | 2013-11-14 A | 8260IFGS36 | 100% | 2013-10-31 | 2013-11-10 | A |
| 8260IFGS40 |  | S623 Conduct General Maintenance |  | 14d | 2013-11-15 A | 2013-11-15 A | 8260IFGS38 | 100% | 2013-10-31 | 2013-11-14 | A |
| 8260IFGS44 |  | Complete TBM Excavation Down Track (SZ) | milestone | 0d | 2013-11-27 A | 2013-11-27 A | 8260IFGS42 | 100% | 2013-10-31 | 2013-10-31 | A |
| 8260IFGS80 |  | S624 Conduct General Maintenance |  | 1d | 2014-01-17 A | 2014-01-17 A | 8260PRMSC060, 8260IFGS78 | 100% | 2013-12-31 | 2014-01-01 | A |
| 8260IFGS82 |  | S624 Excavate 242m (SZ) (m.rock/total 1716m) |  | 25d | 2014-01-18 A | 2014-02-19 A | 8260IFGS80 | 100% | 2014-01-30 | 2014-02-24 | A |
| 8260IFGS84 |  | S624 Conduct General Maintenance |  | 1d | 2014-02-20 A | 2014-02-20 A | 8260IFGS82 | 100% | 2014-01-30 | 2014-01-31 | A |
| 8260IFGS86 |  | S624 Excavate 56m (SZ) (c.rock/total 1772m) |  | 10d | 2014-02-21 A | 2014-02-28 A | 8260IFGS84 | 100% | 2014-01-30 | 2014-02-09 | A |
| 8260IFGS88 |  | S624 Conduct General Maintenance |  | 1d | 2014-03-01 A | 2014-03-01 A | 8260IFGS86 | 100% | 2014-01-30 | 2014-01-31 | A |
| 8260IFGS90 |  | S624 Excavate 92m (SZ) (c.rock/total 1864m) |  | 12d | 2014-03-02 A | 2014-03-13 A | 8260PRTLS130, 8260IFGS88 | 100% | 2014-01-30 | 2014-02-11 | A |
| 8260IFGS92 |  | Complete TBM Excavation Up Track (SZ) | milestone | 0d | 2014-03-13 A | 2014-03-13 A | 8260IFGS90 | 100% | 2014-03-01 | 2014-03-01 | A |

| ID | WBS | Activity | Type | Duration | Start | Finish | Predecessors | Complete | Planned start | Planned finish | Total float | COST CENTRE | 826_As-built | CONTRACTS | WORKS AREA | 826_As-built_verified | user_text5 | SAe Task Tag |
| --- | --- | --- | --- | --- | --- | --- | --- | --- | --- | --- | --- | --- | --- | --- | --- | --- | --- | --- |
|  | 4 | **Interface Contractor Programme - 825** |  |  | 2010-09-20 | 2016-04-29 |  |  |  |  |  |  |  |  |  |  |  |  |
| 8260IF825002 |  | Handover of Works Area 1.4B to 826 - first time | milestone | 0d | 2010-09-20 A | 2010-09-20 A | 8260KD0020 | 100% | 2010-09-21 | 2010-09-21 |  | A | 826_AB |  |  |  |  |  |
| 8260IF825004 |  | Cut & cover tunnel Bay 1 tunnel construction |  | 79d | 2012-05-02 A | 2013-07-02 A | 8260KD0020 | 100% | 2013-12-31 | 2014-03-20 |  | A |  |  |  |  |  |  |
| 8260IF825005 |  | Cut & cover tunnel Bay 2 tunnel construction |  | 79d | 2012-06-28 A | 2014-06-02 A | 8260KD0020 | 100% | 2013-11-30 | 2014-02-17 |  | A |  |  |  |  |  |  |
| 8260IF825003 |  | Handover of Works Area 1.4B to 826 - second time | milestone | 0d | 2014-04-24 A | 2014-04-24 A | 8260JETG0100 | 100% | 2014-08-01 | 2014-08-01 |  | A | 826_AB |  |  |  |  |  |
| 8260IF825001 |  | TBM shaft for Contract 826 within Works Area 1.5 | milestone | 0d | 2014-05-30 A | 2014-05-30 A | 8260SWTUp0030 | 100% | 2015-06-09 | 2015-06-09 |  | A | 826_AB |  |  |  |  |  |
| 8260IF825008 |  | Return of Works Area 1.5 to 825 (19/2014, 11 May 14) | milestone | 0d | 2016-02-05 A | 2016-02-05 A | 8260IF825007 | 100% | 2016-12-01 | 2016-12-01 |  | A | 826_AB | 826 | 1.5 | 826_ABV |  |  |
| 8260IF825006 |  | 826 to complete all works at interface and allow 825 access | milestone | 0d | 2016-03-31 A | 2016-03-31 A | 8260KD0060 | 100% | 2016-04-07 | 2016-04-07 |  | A |  |  |  |  | check |  |
| 8260IF825007 |  | 825 complete stitch joint to 826 tunnel |  | 56d | 2016-04-14 A | 2016-04-29 A | 8260SWTDn0260, 8260IF825006 | 100% | 2016-05-01 | 2016-06-25 |  | A | 826_AB |  |  |  |  |  |
|  | 5 | **Interface Contractor Programme - 830** |  |  | 2016-12-01 | 2017-03-01 |  |  |  |  |  |  |  |  |  |  |  |  |
| 8260IF830001 |  | Allow concrete pumping access for Contract 830 within Works Area 1.5 |  | 91d | 2016-12-01 | 2017-03-01 | 8260AC0050, 8260IF825007, 8260AC0040 |  |  |  | 30d | A |  |  |  |  |  |  |
|  | 6 | **Works Areas** |  |  | 2010-09-20 | 2017-02-28 |  |  |  |  |  |  |  |  |  |  |  |  |
|  | 1 | **Access Dates** |  |  | 2010-09-20 | 2015-07-10 |  |  |  |  |  |  |  |  |  |  |  |  |
| 8260AC0030 |  | Works Area 1.4B first time (36/2010, 13 Sep 10) | milestone | 0d | 2010-09-20 A | 2010-09-20 A | 8260KD0010 FS+182d | 100% |  |  |  | A | 826_AB | 826 | 1.4B |  |  | 1 |
| 8260AC0090 |  | Works Area 1.19 (47/2010, 29 Nov 10) | milestone | 0d | 2010-11-29 A | 2010-11-29 A | 8260KD0010 | 100% |  |  |  | A | 826_AB | 826 | 1.19 |  |  | 1 |
| 8260AC0010 |  | Works Area 1.3 (14/2013, 8 Apr 13) | milestone | 0d | 2015-07-10 A | 2015-07-10 A | 8260SWTUp0170 | 100% | 2015-11-05 | 2015-11-05 |  | A | 826_AB | 826 | 1.3 |  |  | 1 |
| 8260AC0020 |  | Works Area 1.4A (825 Proposed to 01Feb13) | milestone | 0d | 2015-07-10 A | 2015-07-10 A | 8260SWTUp0170 | 100% | 2015-11-05 | 2015-11-05 |  | A | 826_AB | 826 | 1.4A |  |  | 1 |
| 8260AC0040 |  | Works Area 1.4B second time (14/2013, 8 Apr 13) | milestone | 0d | 2015-07-10 A | 2015-07-10 A | 8260SWTUp0170 | 100% | 2015-11-05 | 2015-11-05 |  | A | 826_AB | 826 | 1.4B |  |  | 1 |
| 8260AC0050 |  | Works Area 1.5 (14/2013, 8 Apr 13) | milestone | 0d | 2015-07-10 A | 2015-07-10 A | 8260SWTUp0170 | 100% | 2015-11-05 | 2015-11-05 |  | A | 826_AB | 826 | 1.5 |  |  | 1 |
| 8260AC0060 |  | Works Area 1.6 (14/2013, 8 Apr 13) | milestone | 0d | 2015-07-10 A | 2015-07-10 A | 8260SWTUp0170 | 100% | 2015-11-05 | 2015-11-05 |  | A | 826_AB | 826 | 1.6 |  |  | 1 |
| 8260AC0070 |  | Works Area 1.16 (825 Proposed to 01Feb13) | milestone | 0d | 2015-07-10 A | 2015-07-10 A | 8260SWTUp0170 | 100% | 2015-11-05 | 2015-11-05 |  | A | 826_AB | 826 | 1.16 |  |  | 1 |
| 8260AC0080 |  | Works Area 1.17 (825 Proposed to 01Feb13) | milestone | 0d | 2015-07-10 A | 2015-07-10 A | 8260SWTUp0170 | 100% | 2015-11-05 | 2015-11-05 |  | A | 826_AB | 826 | 1.17 |  |  | 1 |
| 8260AC0100 |  | Works Area 1.21 (825 Proposed to 01Feb13) | milestone | 0d | 2015-07-10 A | 2015-07-10 A | 8260SWTUp0170 | 100% | 2015-11-05 | 2015-11-05 |  | A | 826_AB | 826 | 1.21 |  |  | 1 |
|  | 2 | **Return Dates** |  |  | 2010-12-16 | 2017-02-28 |  |  |  |  |  |  |  |  |  |  |  |  |
| 8260HO0030 |  | Works Area 1.4B first time (01/2011, 9 Jan 11) | milestone | 0d | 2010-12-16 A | 2010-12-16 A | 8260SWMP0140 | 100% | 2010-12-17 | 2010-12-17 |  | A | 826_AB | 826 | 1.4B |  |  | 1 |
| 8260HO0010 |  | Works Area 1.3 (19/2014, 11 May 14) | milestone | 0d | 2016-02-05 A | 2016-02-05 A | 8260SWTDn0260, 8260AC0010 | 100% | 2016-12-01 | 2016-12-01 |  | A | 826_AB | 826 | 1.3 |  |  | 1 |
| 8260HO0050 |  | Works Area 1.5 (19/2014, 11 May 14) | milestone | 0d | 2016-02-05 A | 2016-02-05 A | 8260SWTDn0260 | 100% | 2016-12-01 | 2016-12-01 |  | A | 826_AB | 826 | 1.5 |  |  | 1 |
| 8260HO0020 |  | Works Area 1.4A (19/2015, 10 May 15) | milestone | 0d | 2016-07-07 A | 2016-07-07 A | 8260AC0020, 8260SWTDn0260 | 100% | 2016-12-01 | 2016-12-01 |  | A | 826_AB | 826 | 1.4A |  |  | 1 |
| 8260HO0040 |  | Works Area 1.4B second time (19/2014, 11 May 14) | milestone | 0d | 2016-07-07 A | 2016-07-07 A | 8260SWTDn0260 | 100% | 2016-12-01 | 2016-12-01 |  | A | 826_AB | 826 | 1.4B |  |  | 1 |
| 8260HO0060 |  | Works Area 1.6 (19/2014, 11 May 14) | milestone | 0d | 2016-07-07 A | 2016-07-07 A | 8260SWTDn0260, 8260AC0060 | 100% | 2016-12-01 | 2016-12-01 |  | A | 826_AB | 826 | 1.6 |  | check | 1 |
| 8260HO0080 |  | Works Area 1.17 (50/2013, 15 Dec 13) | milestone | 0d | 2016-07-07 A | 2016-07-07 A | 8260SWTDn0260, 8260AC0080 | 100% | 2016-12-01 | 2016-12-01 |  | A | 826_AB | 826 | 1.17 |  |  | 1 |
| 8260HO0070 |  | Works Area 1.16 (36/2013, 8 Sep 13) | milestone | 0d | 2016-12-01 | 2016-12-01 | 8260AC0070, 8260SWTDn0260 |  |  |  | 121d | A | 826_AB | 826 | 1.16 |  |  | 1 |
| 8260HO0100 |  | Works Area 1.21 (19/2015, 10 May 15) | milestone | 0d | 2016-12-01 | 2016-12-01 | 8260KD0060, 8260SWTDn0260, 8260AC0100 |  |  |  | 121d | A | 826_AB | 826 | 1.21 |  |  | 1 |
| 8260HO0090 |  | Works Area 1.19 (10 May 16) | milestone | 0d | 2017-02-28 | 2017-02-28 | 8260KD0060, 8260SWTDn0260, 8260SWHG0040 |  |  |  | 31d | A | 826_AB | 826 | 1.19 |  |  | 1 |

| ID | WBS | Activity | Type | Duration | Start | Finish | Predecessors | Complete | Planned start | Planned finish | SAe Task Tag | CONTRACTS | COST CENTRE | user_text5 |
| --- | --- | --- | --- | --- | --- | --- | --- | --- | --- | --- | --- | --- | --- | --- |
|  | 3 | **Specified Milestone Dates** |  |  | 2010-04-24 | 2016-11-13 |  |  |  |  |  |  |  |  |
|  | 1 | **Cost Centre A** |  |  | 2010-06-26 | 2016-11-13 |  |  |  |  |  |  |  |  |
| 8260MSA0010 |  | A1 (25/2010, 27 Jun 10) - Contractor's Submissions | milestone | 0d | 2010-06-26 A | 2010-06-26 A | 8260DS0085, 8260DS0395, 8260DS0025, 8260DS0055, 8260DS0065, 8260DS0135, 8260DS0095, 8260DS0045, 8260DS0105 | 100% | 2010-06-27 | 2010-06-27 | 1 | 826 | A |  |
| 8260MSA0020 |  | A2 (51/2010, 26 Dec 10) - Approval of TBM Tunnelling method Statement | milestone | 0d | 2011-01-04 A | 2011-01-04 A | 8260MSA0010, 8260DS0245 | 100% | 2011-01-05 | 2011-01-05 | 1 | 826 | A |  |
| 8260MSA0030 |  | A3 (08/2011, 27 Feb 11) - Implementation of Specified Plans and Programming | milestone | 0d | 2011-02-27 A | 2011-02-27 A | 8260MSA0020, 8260KD0010 | 100% | 2011-02-28 | 2011-02-28 | 1 | 826 | A |  |
| 8260MSA0060 |  | A5 (34/2011, 28 Aug 11) - Approval of Detailed Interface Require Specific with Designated Contractor | milestone | 0d | 2011-08-28 A | 2011-08-28 A | 8260KD0010 | 100% | 2011-08-29 | 2011-08-29 | 1 | 826 | A |  |
| 8260MSA0070 |  | A5 (34/2011, 28 Aug 11) - Implementation of Specified Plans | milestone | 0d | 2011-08-28 A | 2011-08-28 A | 8260MSA0060, 8260KD0010, 8260MSA0050 | 100% | 2011-08-29 | 2011-08-29 | 1 | 826 | A |  |
| 8260MSA0050 |  | A5 (34/2011, 28 Aug 11) - Approval of the MS of Construction of Cross Passages | milestone | 0d | 2012-02-22 A | 2012-02-22 A | 8260DS0275, 8260MSA0040 | 100% | 2012-02-23 | 2012-02-23 | 1 | 826 | A | check |
| 8260MSA0080 |  | A6 (08/2012, 26 Feb 12) - Implementation of Specified Plans and Programme | milestone | 0d | 2012-02-23 A | 2012-02-23 A | 8260MSA0070 | 100% | 2012-02-24 | 2012-02-24 | 1 | 826 | A |  |
| 8260MSA0040 |  | A4 (38/2011, 25 Sep 11) - Delivery of 2 nos. TBM to HGP Launching Shaft | milestone | 0d | 2012-04-30 A | 2012-04-30 A | 8260MSA0030, 8260PRTBM140, 8260PRTBM240 | 100% | 2012-05-01 | 2012-05-01 | 1 | 826 | A |  |
| 8260MSA0090 |  | A7 (25/2012, 24 Jun 12) - Approval of Detailed Interface Require Specific with Designated Contractor | milestone | 0d | 2012-07-30 A | 2012-07-30 A | 8260DS0175 FS+60d | 100% | 2012-07-31 | 2012-07-31 | 1 | 826 | A |  |
| 8260MSA0100 |  | A8 (34/2012, 26 Aug 12) - Implementation of Specified Plans | milestone | 0d | 2012-08-22 A | 2012-08-22 A | 8260MSA0090, 8260MSA0080 | 100% |  |  | 1 | 826 | A |  |
| 8260MSA0120 |  | A9a (08/2013, 24 Feb 13) - Implementation of Specific Plans and Program | milestone | 0d | 2013-03-12 A | 2013-03-12 A | 8260MSA0100 | 100% | 2013-11-30 | 2013-11-30 | 1 | 826 | A |  |
| 8260MSA0130 |  | A10 (34/2013, 25 Aug 13) - Implementation of Specific Plans | milestone | 0d | 2013-09-04 A | 2013-09-04 A | 8260MSA0120, 8260MSA0125 | 100% | 2014-07-15 | 2014-07-15 | 1 | 826 | A |  |
| 8260MSA0125 |  | *A9b (08/2014, 1 May 14) - Complete 15% of the 1st tunnel drive | milestone | 0d | 2014-03-24 A | 2014-03-24 A | 8260MSA0100 | 100% | 2014-03-01 | 2014-03-01 |  |  |  |  |
| 8260MSA0110 |  | *A9 (48/2014, 30 Nov 14) - Complete 28% of the 1st tunnel drive | milestone | 0d | 2014-11-23 A | 2014-11-23 A | 8260SWTUp0120 SF+30d | 100% | 2014-12-01 | 2014-12-01 | 1 | 826 | A |  |
| 8260MSA0140 |  | *A11 (51/2015, 27 Dec 15) - Achieve Degree 1 Completion | milestone | 0d | 2016-03-31 A | 2016-03-31 A | 8260MSA0130, 8260CRinsp010, 8260MSA0110 | 100% | 2016-04-01 | 2016-04-01 | 1 | 826 | A |  |
| 8260MSA0150 |  | A12 (32/2014, 10 Aug 14) - Approval of Draft O & M Manuals and Draft As-built drawings | milestone | 0d | 2016-11-13 A | 2016-11-13 A | 8260CRinsp020 FS+31d, 8260MSA0140 | 100% | 2017-01-24 | 2017-01-24 | 1 | 826 | A |  |
| 8260MSA0160 |  | A13 (06/2015, 8 Feb 15) - Approval of Operating & Maintenance Mauls | milestone | 0d | 2016-11-13 A | 2016-11-13 A | 8260CRinsp040, 8260MSA0150 FS+31d | 100% | 2017-02-24 | 2017-02-24 | 1 | 826 | A |  |
|  | 2 | **Cost Centre B** |  |  | 2010-04-24 | 2015-12-24 |  |  |  |  |  |  |  |  |
| 8260MSB0170 |  | B1.1 (16/2010, 25 Apr 10) - Provide Evidence that TBM | milestone | 0d | 2010-04-24 A | 2010-04-24 A | 8260PRTBM020 | 100% | 2010-04-25 | 2010-04-25 | 1 | 826 | B |  |
| 8260MSB0175 |  | B1a (25/2010, 27 Jun 10) - On-demand bond or bank guarantee | milestone | 0d | 2010-06-25 A | 2010-06-25 A | 8260PRTBM020 FS+50d, 8260MSB0170 | 100% | 2010-06-26 | 2010-06-26 |  | 826 | B |  |
| 8260MSB0178 |  | B1.2 (28/2010, 18 Jul 10) - Provide Evidence that the STP | milestone | 0d | 2010-07-28 A | 2010-07-28 A | 8260MSB0175, 8260PRGSE010 | 100% | 2010-07-29 | 2010-07-29 |  | 826 | B |  |
| 8260MSB0180 |  | B2 (21/2011, 29 May 11) - Delivery of the 1st TBM | milestone | 0d | 2011-05-29 A | 2011-05-29 A | 8260PRTBM140, 8260MSB0178 | 100% | 2011-05-30 | 2011-05-30 | 1 | 826 | B |  |
| 8260MSB0190 |  | B2a (38/2011, 25 Sep 11) - Delivery of the 2nd TBM | milestone | 0d | 2012-04-30 A | 2012-04-30 A | 8260PRTBM240, 8260MSB0180 | 100% | 2012-05-01 | 2012-05-01 | 1 | 826 | B |  |
| 8260MSB0195 |  | B3 (49/2013, 8 Dec 13) - Complete Final Disassembly of TBM | milestone | 0d | 2015-12-24 A | 2015-12-24 A | 8260SWTUp0260, 8260MSB0190, 8260SWTDn0260 | 100% | 2016-04-01 | 2016-04-01 | 1 | 826 | B |  |

| ID | WBS | Activity | Type | Duration | Start | Finish | Predecessors | Complete | Planned start | Planned finish | SAe Task Tag | CONTRACTS | COST CENTRE |
| --- | --- | --- | --- | --- | --- | --- | --- | --- | --- | --- | --- | --- | --- |
|  | 3 | **Cost Centre C (UT/S624)** |  |  | 2013-06-29 | 2016-11-13 |  |  |  |  |  |  |  |
| 8260MSC0270 |  | C1 (36/2012, 09SEP12) - Complete 5% Segment Manual | milestone | 0d | 2013-06-29 A | 2013-06-29 A | 8260PRTLS1200 | 100% |  |  | 1 | 826 | C |
| 8260MSC0280 |  | *C2 (17/2014, 27 Apr 14) - Complete 10% Tunnel Drive & 70% Segments | milestone | 0d | 2014-06-24 A | 2014-06-24 A | 8260MSC0270, 8260SWTDn0070 FS+12d | 100% | 2014-08-01 | 2014-08-01 | 1 | 826 | C |
| 8260MSC0290 |  | *C3 (52/2014, 28 Dec 14) - Complete 40% Tunnel Drive & 95% Segments | milestone | 0d | 2015-01-08 A | 2015-01-08 A | 8260MSC0280, 8260SWTUp0155 SF+5d | 100% | 2015-02-23 | 2015-02-23 | 1 | 826 | C |
| 8260MSC0300 |  | *C4 (26/2015, 28 Jun 15) - Complete 100% Tunnel Drive | milestone | 0d | 2015-08-17 A | 2015-08-17 A | 8260SWTUp0170 FS+10d, 8260MSC0290 | 100% | 2015-11-05 | 2015-11-05 | 1 | 826 | C |
| 8260MSC0310 |  | *C5 (35/2015, 30 Aug 15) -Complete 50% Tunnel invert & walkway | milestone | 0d | 2015-12-27 A | 2015-12-27 A | 8260MSC0300, 8260TUWUp0035 | 100% | 2016-04-01 | 2016-04-01 | 1 | 826 | C |
| 8260MSC0320 |  | *C6 (51/2015, 20 Dec 15) - Achieve Degree 1 Completion | milestone | 0d | 2016-03-31 A | 2016-03-31 A | 8260MSC0310 | 100% | 2016-04-07 | 2016-04-07 | 1 | 826 | C |
| 8260MSC0330 |  | C7 (25/2016) - Complete All Works | milestone | 0d | 2016-11-13 A | 2016-11-13 A | 8260KD0060 FS+157d, 8260MSC0320 | 100% | 2016-12-01 | 2016-12-01 | 1 | 826 | C |
|  | 4 | **Cost Centre D (DT/S623)** |  |  | 2013-06-29 | 2016-11-13 |  |  |  |  |  |  |  |
| 8260MSD0200 |  | D1 (36/2012, 09SEP12) - Complete 5% Segment Manual | milestone | 0d | 2013-06-29 A | 2013-06-29 A | 8260PRTLS1200, 8260SWMP0160 | 100% |  |  | 1 | 826 | D |
| 8260MSD0210 |  | D2 (10/2013, 10MAR13) - Complete 5% Tunnel Drive & 40% Segments | milestone | 0d | 2013-12-28 A | 2013-12-28 A | 8260SWTUp0040 FS-4d, 8260MSD0200 | 100% | 2014-03-01 | 2014-03-01 | 1 | 826 | D |
| 8260MSD0220 |  | *D3 (48/2014, 30 Nov 14) -Complete 28% Tunnel Drive & 85% Segments | milestone | 0d | 2015-04-26 A | 2015-04-26 A | 8260MSD0210, 8260SWTDn0120 SF+7d | 100% | 2015-06-30 | 2015-06-30 | 1 | 826 | D |
| 8260MSD0230 |  | *D4 (35/2015, 30 Aug 15) -Complete 100% Tunnel Drive | milestone | 0d | 2015-11-14 A | 2015-11-14 A | 8260SWTDn0175 FS+11d, 8260MSD0220 | 100% | 2016-04-01 | 2016-04-01 | 1 | 826 | D |
| 8260MSD0240 |  | *D5 (43/2015, 25 Oct 15) - Complete 50% of Tunnel invert & walkway | milestone | 0d | 2016-01-31 A | 2016-01-31 A | 8260MSD0230, 8260TUWDn0080 | 100% | 2016-04-01 | 2016-04-01 | 1 | 826 | D |
| 8260MSD0250 |  | *D6 (51/2015, 20 Dec 15) - Achieve Degree 1 Completion | milestone | 0d | 2016-03-31 A | 2016-03-31 A | 8260MSD0240 | 100% | 2016-04-07 | 2016-04-07 | 1 | 826 | D |
| 8260MSD0260 |  | D7 (25/2016) - Complete All Works | milestone | 0d | 2016-11-13 A | 2016-11-13 A | 8260MSD0250, 8260KD0060 FS+157d | 100% | 2016-12-01 | 2016-12-01 | 1 | 826 | D |
|  | 5 | **Cost Centre E (CP)** |  |  | 2010-12-15 | 2016-11-13 |  |  |  |  |  |  |  |
| 8260MSE0340 |  | E1 (01/2011, 9 Jan 11) - Complete Ground Treatment | milestone | 0d | 2010-12-15 A | 2010-12-15 A | 8260SWMP0110, 8260SWMP0120 | 100% | 2010-12-16 | 2010-12-16 | 1 | 826 | E |
| 8260MSE0350 |  | E2 (08/2011, 27 Feb 11) - Submit instrumentation | milestone | 0d | 2011-02-27 A | 2011-02-27 A | 8260KD0010 FS+350d, 8260MSE0340 | 100% | 2011-02-28 | 2011-02-28 | 1 | 826 | E |
| 8260MSE0360 |  | E3 (34/2011, 28 Aug 11) - Submit instrumentation | milestone | 0d | 2011-08-28 A | 2011-08-28 A | 8260MSE0350 FS+182d | 100% | 2011-08-29 | 2011-08-29 | 1 | 826 | E |
| 8260MSE0370 |  | E4 (08/2012, 26 Feb 12) - Submit instrumentation | milestone | 0d | 2012-02-24 A | 2012-02-24 A | 8260MSE0360 FS+182d | 100% | 2012-02-25 | 2012-02-25 | 1 | 826 | E |
| 8260MSE0380 |  | E5 (34/2012, 26 Aug 12) - Submit instrumentation | milestone | 0d | 2012-08-25 A | 2012-08-25 A | 8260MSE0370 FS+182d | 100% |  |  | 1 | 826 | E |
| 8260MSE0390 |  | E6 (08/2013, 24 Feb 13) - Submit instrumentation | milestone | 0d | 2013-09-30 A | 2013-09-30 A | 8260MSE0380 FS+182d | 100% |  |  | 1 | 826 | E |
| 8260MSE0400 |  | E7 (48/2013, 30 Nov 13) - Major ground treatment plant for CPs | milestone | 0d | 2015-02-01 A | 2015-02-01 A | 8260MSE0390 | 100% |  |  | 1 | 826 | E |
| 8260MSE0410 |  | E8 (13/2015, 29 Mar 15) - Complete 4 Cross Passage Ground Treatment | milestone | 0d | 2015-09-26 A | 2015-09-26 A | 8260MSE0400 | 100% | 2015-11-05 | 2015-11-05 | 1 | 826 | E |
| 8260MSE0420 |  | *E9 (51/2015, 20 Dec 15) - Deg 1 Completion in Cross Passage | milestone | 0d | 2016-03-31 A | 2016-03-31 A | 8260SWXP50097, 8260SWXP60140, 8260MSE0410, 8260SWXP50130, 8260SWXP60139 | 100% | 2016-04-01 | 2016-04-01 | 1 | 826 | E |
| 8260MSE0430 |  | E10 (25/2016) - All Works Complete | milestone | 0d | 2016-11-13 A | 2016-11-13 A | 8260KD0060 FS+275d, 8260MSE0420 | 100% | 2016-12-31 | 2016-12-31 | 1 | 826 | E |

Notes:
- 8260MSC0280: P3 Activity Log Info: Chainage 116+002
- 8260MSC0290: P3 Activity Log Info: ??Chainage 116+519??116519 - 116430 = 83m @ 21 = / 4days
- 8260MSC0300: P3 Activity Log Info: Chainage 117+403
- 8260MSD0210: P3 Activity Log Info: ??Chainage 116+013??
- 8260MSD0220: P3 Activity Log Info: ??Chainage 116+529??116529-116415 = 114m @ 21m = / 6 days
- 8260MSD0230: P3 Activity Log Info: Chainage 117+413

| ID | WBS | Activity | Type | Duration | Start | Finish | Predecessors | Complete | Remaining | Planned start | Planned finish | Total float | Free float | Resources | CONTRACTS | COST CENTRE | LOCATION OF WORK | 826_As-built | REVISION |
| --- | --- | --- | --- | --- | --- | --- | --- | --- | --- | --- | --- | --- | --- | --- | --- | --- | --- | --- | --- |
|  | 10 | **Construction and Site Works** |  |  | 2010-08-05 | 2017-03-31 |  |  |  |  |  |  |  |  |  |  |  |  |  |
|  | 10 | **Surface Operations in Works Areas** |  |  | 2010-08-05 | 2017-02-28 |  |  |  |  |  |  |  |  |  |  |  |  |  |
|  | 1 | **Huanggang Park** |  |  | 2010-11-02 | 2017-02-28 |  |  |  |  |  |  |  |  |  |  |  |  |  |
| 8260SWHG0010 |  | Establish MTRC Project Office in Shenzhen |  | 48d | 2010-11-02 A | 2011-01-09 A | 8260TD0040 FS+90d, 8260PRMSC050 SS | 100% |  | 2010-11-02 | 2010-12-20 |  |  | General Civil Engineering Labour [2400 h]; Concrete Construction Labour [960 h]; Temporary Works Steelworker [1440 h]; MEP Installation Labour [960 h] | 826 | A | 2620 | 826_AB |  |
| 8260SWHG0020 |  | Establish 826 HGP Site Office |  | 48d | 2010-11-30 A | 2011-03-14 A | 8260TD0040 | 100% |  | 2010-11-30 | 2011-01-17 |  |  | Temporary Works Steelworker [1440 h]; MEP Installation Labour [960 h]; General Civil Engineering Labour [2400 h]; Concrete Construction Labour [960 h] | 826 | A | 2620 | 826_AB |  |
| 8260SWHG0030 |  | University Games Period |  | 30d | 2011-08-01 A | 2011-08-31 A | 8260KD0010 FS+520d | 100% |  |  |  |  |  |  | 826 | A | 2620 | 826_AB |  |
| 8260SWHG0040 |  | Operation and maintenance of ground support facilities during tunnel construction |  | 1400d | 2012-06-27 A | 2017-02-28 | 8260SWHG0030, 8260CPSM0030, 8260KD0060 FF+91d | 93% | 90d | 2013-12-31 | 2017-10-31 | 31d | 0d | STP Support Ground Level Labour [33585.1 h]; TBM Back Up and Support Labour [33585.1 h]; General Civil Engineering Labour [47427.1 h] | 826 | A | 2620 | 826_AB | D1 |
|  | 2 | **Mai Po Retrieval Shaft** |  |  | 2010-08-05 | 2014-09-02 |  |  |  |  |  |  |  |  |  |  |  |  |  |
|  | 1 | **Ground Treatment Works** |  |  | 2010-08-05 | 2011-03-31 |  |  |  |  |  |  |  |  |  |  |  |  |  |
| 8260SWMP0010 |  | Submit Inspection and Testing Plan for ground treatment works | milestone | 0d | 2010-08-05 A | 2010-08-05 A | 8260AC0030 FS-45d | 100% |  | 2010-08-06 | 2010-08-06 |  |  |  |  | E |  |  |  |
| 8260SWMP0020 |  | Engineer's review on Inspection and Testing Plan |  | 28d | 2010-08-06 A | 2010-09-13 A | 8260SWMP0010 | 100% |  | 2010-08-06 | 2010-09-03 |  |  |  |  | E |  |  |  |
| 8260SWMP0030 |  | Establish Works Area 1.4B with 825 Contractor |  | 24d | 2010-09-20 A | 2010-12-16 A | 8260GV0010, 8260DS0035 FS+90d, 8260DS0125 FS+60d, 8260DS0145 FS+45d, 8260DS0225, 8260AC0030 SS, 8260DS0195, 8260DS0015, 8260DS0115 FS+60d, 8260DS0215, 8260DS0205, 8260DS0165 FS+90d, 8260DS0185, 8260DS0395, 8260TD0020 | 100% |  | 2010-09-20 | 2010-10-14 |  |  | General Civil Engineering Labour [1200 h] | 826 | E | 2610 |  |  |
| 8260SWMP0040 |  | Set up grouting plant |  | 10d | 2010-10-05 A | 2010-10-12 A | 8260SWMP0030 SS | 100% |  | 2010-10-05 | 2010-10-15 |  |  | Probing & Grouting Labour [720 h] | 826 | E | 2610 |  |  |
| 8260SWMP0050 |  | Drilling - Down Track tunnel |  | 10d | 2010-10-07 A | 2010-11-04 A | 8260TW0050, 8260SWMP0040, 8260SWMP0020 | 100% |  | 2010-10-07 | 2010-10-17 |  |  | Drilling and Grouting Labour [960 h] | 826 | E | 2610 |  |  |
| 8260SWMP0060 |  | Drilling - Up Track tunnel |  | 10d | 2010-10-18 A | 2010-11-04 A | 8260SWMP0050 FS-5d | 100% |  | 2010-10-18 | 2010-10-28 |  |  | Drilling and Grouting Labour [960 h] | 826 | E | 2610 |  |  |
| 8260SWMP0150 |  | Install instrumentation and monitoring equipment |  | 96d | 2010-10-28 A | 2011-03-31 A | 8260DS0255 | 100% |  | 2010-10-28 | 2011-02-01 |  |  | MEP Installation Labour [1800 h] | 826 | E | 2610 |  |  |
| 8260SWMP0070 |  | TAM Grouting works - Down Track tunnel |  | 16d | 2010-11-04 A | 2010-11-12 A | 8260SWMP0050 | 100% |  | 2010-11-04 | 2010-11-20 |  |  | Drilling and Grouting Labour [2070 h] | 826 | E | 2610 |  |  |
| 8260SWMP0080 |  | TAM Grouting works - Up Track tunnel |  | 16d | 2010-11-11 A | 2010-12-17 A | 8260SWMP0060 | 100% |  | 2010-11-11 | 2010-11-27 |  |  | Drilling and Grouting Labour [2070 h] | 826 | E | 2610 |  |  |
| 8260SWMP0090 |  | TAM Grouting works - Down Track tunnel |  | 16d | 2010-11-18 A | 2010-12-04 A | 8260SWMP0070 | 100% |  |  |  |  |  | Drilling and Grouting Labour [2070 h] | 826 | E | 2610 |  |  |
| 8260SWMP0100 |  | TAM Grouting works - Up Track tunnel |  | 16d | 2010-11-18 A | 2010-12-06 A | 8260SWMP0080 | 100% |  | 2010-11-18 | 2010-12-04 |  |  | Drilling and Grouting Labour [2070 h] | 826 | E | 2610 |  |  |
| 8260SWMP0110 |  | Permeability testing - Down Track tunnel |  | 6d | 2010-12-07 A | 2010-12-10 A | 8260SWMP0090 | 100% |  | 2010-12-07 | 2010-12-13 |  |  | Drilling and Grouting Labour [210 h] | 826 | E | 2610 |  |  |
| 8260SWMP0120 |  | Permeability testing - Up Track tunnel |  | 6d | 2010-12-08 A | 2010-12-11 A | 8260SWMP0100 | 100% |  | 2010-12-08 | 2010-12-14 |  |  | Drilling and Grouting Labour [210 h] | 826 | E | 2610 |  |  |
| 8260SWMP0130 |  | Demobilise grout plant |  | 5d | 2010-12-13 A | 2010-12-15 A | 8260SWMP0110, 8260SWMP0120 | 100% |  | 2010-12-13 | 2010-12-18 |  |  | Drilling and Grouting Labour [360 h] | 826 | E | 2610 |  |  |
| 8260SWMP0140 |  | Clear Works Area 1.4B for 825 Contractor's D.Wall |  | 9d | 2010-12-13 A | 2010-12-15 A | 8260SWMP0130, 8260SWMP0030 | 100% |  | 2010-12-13 | 2010-12-22 |  |  | General Civil Engineering Labour [600 h] | 826 | E | 2610 |  |  |

Notes:
- 8260SWMP0050: P3 Activity Log Info: ??276m2 / 1.7m2 = 163 points x 34m dp = 5525m / drilling @ 60m/hr = 92 hrs/54 ??hrs/wk = 2 / weeks??Add 1 day for installing TAM tubes. Say, / 13 days??S/c period OK?? ??
- 8260SWMP0060: P3 Activity Log Info: ??276m2 / 1.7m2 = 163 points x 34m dp = 5525m / drilling @ ??60m/hr = 92 hrs/54 hrs/wk = 2 / weeks??Add 1 day for installing TAM tubes. Say, / 13 days??S/c period ??OK
- 8260SWMP0070: P3 Activity Log Info: ??4582m3 ground with 10% using B/C grout @ / 1m3/hr/point = 458 hrs/ 2x10 hr ??shifts = 2 / rigs for 12 days??S/C period is OK
- 8260SWMP0080: P3 Activity Log Info: ??4582m3 ground with 10% using B/C grout @ / 1m3/hr/point = 458 hrs/ 2x10 hr ??shifts = 2 / rigs for 12 days??S/C period is OK
- 8260SWMP0090: P3 Activity Log Info: ??4582m3 with 3% voids = 137m3 @ 0.75m3/hr = 183 / m/c hrs with 1 x 10hr ??shift = 20 days, but use / 2 rigs.??S/c period is OK
- 8260SWMP0100: P3 Activity Log Info: ??4582m3 with 3% voids = 137m3 @ 0.75m3/hr = 183 / m/c hrs with 1 x 10hr ??shift = 20 days, but use / 2 rigs.??S/c period is OK

| ID | WBS | Activity | Type | Duration | Start | Finish | Predecessors | Complete | Planned start | Planned finish | Resources | 826_As-built | COST CENTRE | user_text1 | 826_As-built_verified | REVISION | CONTRACTS | LOCATION OF WORK | SUB-LOCATION OF | AREAS / ROOMS |
| --- | --- | --- | --- | --- | --- | --- | --- | --- | --- | --- | --- | --- | --- | --- | --- | --- | --- | --- | --- | --- |
|  | 4 | **Jet Grouting Works for TBM Break-out** |  |  | 2013-09-02 | 2014-09-02 |  |  |  |  |  |  |  |  |  |  |  |  |  |  |
| 8260JETG0100 |  | Submit Method Statement for Jet Grouting Works |  | 86d | 2013-09-02 A | 2013-12-18 A | 8260IFGS74 | 100% | 2013-12-31 | 2014-03-27 |  | 826_AB |  |  |  |  |  |  |  |  |
| 8260JETG0130 |  | Trial of Jet grouting |  | 27d | 2013-09-24 A | 2013-11-04 A | 8260JETG0100 | 100% | 2013-12-31 | 2014-01-27 | Drilling and Grouting Labour [272 h] | 826_AB |  |  |  |  |  |  |  |  |
| 8260JETG0110 |  | Engineer's review |  | 20d | 2013-12-19 A | 2014-01-13 A | 8260JETG0100 | 100% | 2013-12-31 | 2014-01-20 |  | 826_AB |  |  |  |  |  |  |  |  |
| 8260JETG0120 |  | Submission for RDO/BD consultation |  | 22d | 2014-01-14 A | 2014-04-23 A | 8260JETG0110 | 100% | 2013-12-31 | 2014-01-22 |  | 826_AB |  |  |  |  |  |  |  |  |
| 8260JETG0140 |  | Jet Grouting Works |  | 123d | 2014-04-24 A | 2014-09-02 A | 8260JETG0130, 8260JETG0120 | 100% | 2014-07-18 | 2014-11-18 | Drilling and Grouting Labour [7380 h] | 826_AB |  |  |  |  |  |  |  |  |
|  | 3 | **Ground Freezing Plant** |  |  | 2011-12-20 | 2013-08-23 |  |  |  |  |  |  |  |  |  |  |  |  |  |  |
| 8260SWMP0170 |  | Engineer's review on Inspection and Testing Plan |  | 28d | 2011-12-20 A | 2013-08-23 A | 8260SWMP0160 | 100% | 2015-03-24 | 2015-04-21 |  | 826_AB | E |  |  |  |  |  |  |  |
| 8260SWMP0160 |  | Submit Inspection and Testing Plan for Ground freezing | milestone | 0d | 2011-12-20 A | 2011-12-20 A | 8260JETG0140 | 100% | 2015-03-24 | 2015-03-24 |  | 826_AB | E |  |  |  |  |  |  |  |
|  | 30 | **TBM Drives from Boundary to Mai Po Shaft** |  |  | 2013-11-28 | 2016-07-07 |  |  |  |  |  |  |  |  |  |  |  |  |  |  |
|  | 10 | **Down Track - Ch.115+929 to Ch.117+400** |  |  | 2013-11-28 | 2015-11-04 |  |  |  |  |  |  |  |  |  |  |  |  |  |  |
| 8260SWTDn0030 |  | Anticipated handover at Boundary from GSG Contractor |  | 1d | 2013-11-28 A | 2013-11-28 A | 8260PRMSC020, 8260PD0010, 8260TW0260, 8260SWMP0150, 8260PW0110, 8260TW0120, 8260TW0190, 8260TW0310 | 100% | 2013-12-31 | 2014-01-01 | TBM Operators [9 h] | 826_AB |  | 0428 | 826_ABV |  |  |  |  |  |
| 8260SWTDn0040 |  | Continue S623 drive, ch. 115+929 to ch. 115+950 in soil |  | 3d | 2013-11-28 A | 2013-12-08 A | 8260SWTDn0030 | 100% | 2013-12-01 | 2013-12-04 | STP Support Ground Level Labour [200 h]; TBM Ground Level Labour [250 h]; TBM Back Up and Support Labour [926 h]; Probing & Grouting Labour [371 h]; Tunnel Segment Labour (Installation) [371 h]; TBM Operators [185 h]; Excavated Materials [425 m3]; Tunnel Segment Rings (Installation) [11 NO] | 826_AB | D | 0428 |  | D | 826 | 2610 | TUNN | DT |
| 8260SWTDn0050 |  | Continue S623 drive, ch. 115+950 to ch. 115+983 in mixed ground |  | 4d | 2013-12-09 A | 2013-12-21 A | 8260SWTDn0040 | 100% | 2013-12-31 | 2014-01-04 | STP Support Ground Level Labour [328 h]; TBM Ground Level Labour [410 h]; TBM Back Up and Support Labour [1478 h]; Probing & Grouting Labour [591 h]; Tunnel Segment Labour (Installation) [591 h]; TBM Operators [296 h]; Excavated Materials [668.3 m3]; Tunnel Segment Rings (Installation) [17 NO] | 826_AB | D | 0428 |  | D | 826 | 2610 | TUNN | DT |
| 8260SWTDn0060 |  | Continue S623 drive, ch. 115+983 to ch. 116+050 in soil |  | 8d | 2013-12-22 A | 2014-01-19 A | 8260SWTDn0050 | 100% | 2013-12-31 | 2014-01-08 | STP Support Ground Level Labour [648 h]; TBM Ground Level Labour [810 h]; TBM Back Up and Support Labour [2956 h]; Probing & Grouting Labour [1182 h]; Tunnel Segment Labour (Installation) [1182 h]; TBM Operators [591 h]; Excavated Materials [1356.8 m3]; Tunnel Segment Rings (Installation) [34 NO] | 826_AB | D | 0428 |  | D | 826 | 2610 | TUNN | DT |
| 8260SWTDn0070 |  | Continue S623 drive, ch. 116+050 to ch. 116+213 in mixed ground |  | 20d | 2014-01-20 A | 2014-04-08 A | 8260SWTDn0060 | 100% | 2013-12-31 | 2014-01-20 | STP Support Ground Level Labour [1576 h]; TBM Ground Level Labour [1970 h]; TBM Back Up and Support Labour; Probing & Grouting Labour; Tunnel Segment Labour (Installation) [2919 h]; TBM Operators [1460 h]; Excavated Materials [3300 m3]; Tunnel Segment Rings (Installation) [82 NO] | 826_AB | D | 0428 |  | D | 826 | 2610 | TUNN | DT |
| 8260SWTDn0080 |  | Continue S623 drive, ch. 116+213 to ch. 116+230 in soil |  | 2d | 2014-04-09 A | 2014-04-11 A | 8260SWTDn0070 | 100% | 2014-04-01 | 2014-04-03 | STP Support Ground Level Labour [160 h]; TBM Ground Level Labour [200 h]; TBM Back Up and Support Labour [750 h]; Probing & Grouting Labour [120 h]; Tunnel Segment Labour (Installation) [300 h]; TBM Operators [150 h]; Excavated Materials [345 m3]; Tunnel Segment Rings (Installation) [8.5 NO] | 826_AB | D | 0428 |  | D | 826 | 2610 | TUNN | DT |
| 8260SWTDn0090 |  | Continue S623 drive, ch. 116+230 to ch. 116+260 in marble |  | 8d | 2014-04-14 A | 2014-06-04 A | 8260SWTDn0080 | 100% | 2014-04-01 | 2014-04-09 | STP Support Ground Level Labour [640 h]; TBM Ground Level Labour [800 h]; TBM Back Up and Support Labour [3000 h]; Probing & Grouting Labour [1200 h]; Tunnel Segment Labour (Installation) [1200 h]; TBM Operators [600 h]; Excavated Materials [608 m3]; Tunnel Segment Rings (Installation) [15 NO] | 826_AB | D | 0428 |  | D | 826 | 2610 | TUNN | DT |
| 8260SWTDn0100 |  | Continue S623 drive, ch. 116+260 to ch. 116+284 in marble |  | 10d | 2014-06-05 A | 2014-07-01 A | 8260SWTDn0090 | 100% | 2014-07-01 | 2014-07-11 | STP Support Ground Level Labour [768 h]; TBM Ground Level Labour [960 h]; TBM Back Up and Support Labour [3000 h]; Probing & Grouting Labour [1200 h]; Tunnel Segment Labour (Installation) [1200 h]; TBM Operators [600 h]; Excavated Materials [608 m3]; Tunnel Segment Rings (Installation) [15 NO] | 826_AB | D | 0428 |  | D | 826 | 2610 | TUNN | DT |
| 8260SWTDn0105 |  | TBM Cutter Head Repair & S624 Overtaking Stoppage |  | 84d | 2014-07-02 A | 2014-11-21 A | 8260SWTDn0100 | 100% | 2014-08-01 | 2014-10-24 | TBM Back Up and Support Labour [8400 h]; TBM Ground Level Labour [8400 h]; TBM Operators [8400 h] | 826_AB |  |  | 826_ABV |  |  |  |  |  |
| 8260SWTDn0110 |  | Continue S623 drive, ch. 116+284 to ch. 116+319 in marble |  | 11d | 2014-11-22 A | 2015-02-03 A | 8260SWTDn0105 | 100% | 2014-11-21 | 2014-12-01 | STP Support Ground Level Labour [880 h]; TBM Ground Level Labour [1100 h]; Excavated Materials [589.76 m3]; Probing & Grouting Labour [1164 h]; TBM Back Up and Support Labour [2910 h]; TBM Operators [582 h]; Tunnel Segment Labour (Installation) [1164 h]; Tunnel Segment Rings (Installation) [14.55 NO] | 826_AB | D | 0428 |  | D | 826 | 2610 | TUNN | DT |
| 8260SWTDn0120 |  | Continue S623 drive, ch. 116+319 to ch. 116+349 in marble |  | 10d | 2015-02-04 A | 2015-02-19 A | 8260SWTDn0110 | 100% | 2015-02-04 | 2015-02-13 | Excavated Materials [608 m3]; Tunnel Segment Rings (Installation) [15 NO]; STP Support Ground Level Labour [800 h]; TBM Ground Level Labour [1000 h]; TBM Back Up and Support Labour [3000 h]; Probing & Grouting Labour [1200 h]; Tunnel Segment Labour (Installation) [1200 h]; TBM Operators [600 h] | 826_AB | D | 0428 |  | D | 826 | 2610 | TUNN | DT |
| 8260SWTDn0130 |  | Continue S623 drive, ch. 116+349 to ch. 116+379 in marble |  | 10d | 2015-02-20 A | 2015-03-01 A | 8260SWTDn0120 | 100% | 2015-02-01 | 2015-02-10 | STP Support Ground Level Labour [800 h]; TBM Ground Level Labour [1000 h]; TBM Back Up and Support Labour [3000 h]; Probing & Grouting Labour [1200 h]; Tunnel Segment Labour (Installation) [1200 h]; TBM Operators [600 h]; Excavated Materials [610 m3]; Tunnel Segment Rings (Installation) [15 NO] | 826_AB | D | 0428 |  | D | 826 | 2610 | TUNN | DT |
| 8260SWTDn0140 |  | Continue S623 drive, ch. 116+379 to ch. 116+408 in marble |  | 9d | 2015-03-01 A | 2015-03-12 A | 8260SWTDn0130 | 100% | 2015-03-01 | 2015-03-05 | STP Support Ground Level Labour [720 h]; TBM Ground Level Labour [900 h]; TBM Back Up and Support Labour [2910 h]; Probing & Grouting Labour [1164 h]; Tunnel Segment Labour (Installation) [1164 h]; TBM Operators [582 h]; Excavated Materials [589.76 m3]; Tunnel Segment Rings (Installation) [15 NO] | 826_AB | D | 0428 |  | D | 826 | 2610 | TUNN | DT |
| 8260SWTDn0150 |  | Continue S623 drive, ch. 116+408 to ch. 116+430 in marble |  | 7d | 2015-03-02 A | 2015-03-19 A | 8260SWTDn0140 | 100% | 2015-03-01 | 2015-03-07 | TBM Ground Level Labour [700 h]; TBM Back Up and Support Labour [2190 h]; Probing & Grouting Labour [480 h]; Tunnel Segment Labour (Installation) [876 h]; TBM Operators [438 h]; Excavated Materials [443.84 m3]; Tunnel Segment Rings (Installation) [11 NO]; STP Support Ground Level Labour [560 h] | 826_AB | D | 0428 |  | D | 826 | 2610 | TUNN | DT |
| 8260SWTDn0155 |  | Continue S623 drive, ch. 116+430 to ch. 116+600 in soil |  | 30d | 2015-03-20 A | 2015-05-11 A | 8260SWTDn0150 | 100% | 2015-03-01 | 2015-03-30 | STP Support Ground Level Labour [2400 h]; TBM Ground Level Labour [3000 h]; Excavated Materials [3450 m3]; Probing & Grouting Labour [3000 h]; TBM Back Up and Support Labour [7500 h]; TBM Operators [1500 h]; Tunnel Segment Labour (Installation) [3000 h]; Tunnel Segment Rings (Installation) [85 NO] | 826_AB |  | 0428 |  |  |  |  |  |  |
| 8260SWTDn0160 |  | Continue S623 drive, ch. 116+600 to ch. 116+694 in soil |  | 17d | 2015-05-12 A | 2015-05-25 A | 8260SWTDn0155 | 100% | 2015-07-17 | 2015-08-02 | STP Support Ground Level Labour [1360 h]; TBM Ground Level Labour [1700 h]; TBM Back Up and Support Labour [16667 h]; Probing & Grouting Labour [6667 h]; Tunnel Segment Labour (Installation) [6672 h]; TBM Operators [3336 h]; Excavated Materials [5065.16 m3]; Tunnel Segment Rings (Installation) [125 NO] | 826_AB | D | 0428 |  | D | 826 | 2610 | TUNN | DT |
| 8260SWTDn0163 |  | Continue S623 drive, ch. 116+694 to ch. 116+927 in Alluvial zone |  | 80d | 2015-05-26 A | 2015-09-01 A | 8260SWTDn0160 | 100% | 2015-06-30 | 2015-09-17 | STP Support Ground Level Labour [6400 h]; TBM Ground Level Labour [8000 h]; TBM Operators [8000 h]; Tunnel Segment Labour (Installation) [8000 h]; Probing & Grouting Labour [6400 h]; TBM Back Up and Support Labour [8000 h]; Excavated Materials [100 m3]; Tunnel Segment Rings (Installation) [800 NO] | 826_AB |  |  |  |  |  |  |  |  |
| 8260SWTDn0165 |  | Continue S623 drive, ch. 116+927 to ch. 116+945 in soil |  | 3d | 2015-09-02 A | 2015-09-04 A | 8260SWTDn0163, 8260PRTLS1214 | 100% | 2015-09-29 | 2015-10-01 | STP Support Ground Level Labour [240 h]; TBM Ground Level Labour [300 h]; Excavated Materials [1932 m3]; Probing & Grouting Labour [1680 h]; TBM Back Up and Support Labour [4200 h]; TBM Operators [840 h]; Tunnel Segment Labour (Installation) [1680 h]; Tunnel Segment Rings (Installation) [47.6 NO] | 826_AB |  | 0428 |  |  |  |  |  |  |
| 8260SWTDn0170 |  | Continue S623 drive, ch. 116+945 to ch. 117+400 in soil |  | 79d | 2015-09-05 A | 2015-10-30 A | 8260SWTDn0165, 8260PRTLS1214 | 100% | 2015-09-29 | 2015-12-16 | STP Support Ground Level Labour [6320 h]; TBM Ground Level Labour [7900 h]; TBM Back Up and Support Labour [20070 h]; Probing & Grouting Labour [8029 h]; Tunnel Segment Labour (Installation) [8028 h]; TBM Operators [4014 h]; Excavated Materials [9232.2 m3]; Tunnel Segment Rings (Installation) [228 NO] | 826_AB | D | 0428 |  | D | 826 | 2610 | TUNN | DT |
| 8260SWTDn0173 |  | Pre-coring at diaphragm wall after TBM S623 arrival |  | 3d | 2015-10-31 A | 2015-11-03 A | 8260SWTDn0170 | 100% | 2015-09-29 | 2015-10-01 | TBM Ground Level Labour [300 h]; Drilling and Grouting Labour [240 h] | 826_AB |  |  |  |  |  |  |  |  |
| 8260SWTDn0175 |  | TBM Breakthrough at Mai Po Shaft |  | 1d | 2015-11-04 A | 2015-11-04 A | 8260PRTLS140, 8260SWTDn0173 | 100% | 2015-09-29 | 2015-09-29 | TBM Ground Level Labour [100 h]; TBM Back Up and Support Labour [300 h]; Probing & Grouting Labour [120 h]; Tunnel Segment Labour (Installation) [120 h]; TBM Operators [60 h] | 826_AB | D | 0428 | 826_ABV | D | 826 | 2610 | TUNN | DT |

| ID | WBS | Activity | Type | Duration | Start | Finish | Predecessors | Complete | Planned start | Planned finish | Constraint | Resources | 826_As-built | REVISION | CONTRACTS | COST CENTRE | LOCATION OF WORK | SUB-LOCATION OF | AREAS / ROOMS | 826_As-built_verified | user_text1 |
| --- | --- | --- | --- | --- | --- | --- | --- | --- | --- | --- | --- | --- | --- | --- | --- | --- | --- | --- | --- | --- | --- |
|  | 20 | **S623 TBM Removal** |  |  | 2015-11-05 | 2016-07-07 |  |  |  |  |  |  |  |  |  |  |  |  |  |  |  |
| 8260SWTDn0192 |  | Move TBM S623 front portion to cradle |  | 6d | 2015-11-05 A | 2015-11-19 A | 8260SWTDn0175, 8260SWTUp0260, 8260PRTLS1216, 8260TBMRP0183 | 100% | 2015-10-22 | 2015-10-27 |  | Temporary Works Steelworker [480 h]; TBM Back Up and Support Labour [600 h]; Temporary Works Steel [7.5 t] | 826_AB |  |  |  |  |  |  |  |  |
| 8260SWTDn0193 |  | Weld additional bracing brackets "corbels" |  | 7d | 2015-11-20 A | 2015-11-21 A | 8260SWTDn0192 | 100% | 2016-04-01 | 2016-04-07 |  | Temporary Works Steelworker [560 h]; Temporary Works Steel [8.75 t] | 826_AB |  |  |  |  |  |  |  |  |
| 8260SWTDn0194 |  | Install cradle on lateral shifting system |  | 3d | 2015-11-23 A | 2015-11-24 A | 8260SWTDn0193 | 100% | 2016-04-01 | 2016-04-03 |  | TBM Back Up and Support Labour [240 h]; Temporary Works Steelworker [240 h] | 826_AB |  |  |  |  |  |  |  |  |
| 8260SWTDn0195 |  | Move and shift TBM to dismantle location |  | 5d | 2015-11-25 A | 2015-11-25 A | 8260SWTDn0194, 8260SWFDn0010, 8260SWFDn0020 | 100% | 2016-04-07 | 2016-04-11 |  | TBM Back Up and Support Labour [3000 h]; TBM Operators [600 h] | 826_AB | D | 826 | D | 2610 | TUNN | DT |  |  |
| 8260SWTDn0200 |  | Dismantle Cutter Head & Remove |  | 5d | 2015-11-26 A | 2015-12-05 A | 8260SWTDn0195 | 100% | 2016-04-01 | 2016-04-05 |  | TBM Ground Level Labour [500 h]; TBM Back Up and Support Labour [7500 h]; TBM Operators [1500 h] | 826_AB | D | 826 | D | 2610 | TUNN | DT |  |  |
| 8260SWTDn0202 |  | Dismantle TBM rear & Remove |  | 5d | 2015-12-07 A | 2015-12-08 A | 8260SWTDn0200 | 100% | 2016-04-01 | 2016-04-05 |  | TBM Ground Level Labour [500 h]; TBM Back Up and Support Labour [500 h]; TBM Operators [240 h] | 826_AB |  |  |  |  |  |  |  |  |
| 8260SWTDn0204 |  | Dismantle segment installation machine & Remove |  | 5d | 2015-12-09 A | 2015-12-10 A | 8260SWTDn0202 | 100% | 2016-04-01 | 2016-04-05 |  | TBM Ground Level Labour [500 h]; TBM Back Up and Support Labour [500 h]; TBM Operators [240 h] | 826_AB |  |  |  |  |  |  |  |  |
| 8260SWTDn0206 |  | Dismantle TBM middle sheild & Remove |  | 4d | 2015-12-11 A | 2015-12-12 A | 8260SWTDn0204 | 100% | 2016-04-01 | 2016-04-04 |  | TBM Ground Level Labour [400 h]; TBM Back Up and Support Labour [6000 h]; TBM Operators [1200 h] | 826_AB | D | 826 | D | 2610 | TUNN | DT |  |  |
| 8260SWTDn0207 |  | Dismantle TBM front sheild & Remove |  | 4d | 2015-12-14 A | 2015-12-15 A | 8260SWTDn0206 | 100% | 2016-04-01 | 2016-04-04 |  | TBM Ground Level Labour [400 h]; TBM Back Up and Support Labour [500 h]; TBM Operators [240 h] | 826_AB |  |  |  |  |  |  |  |  |
| 8260SWTDn0208 |  | Dismantle S623 Link Bridge & Remove |  | 3d | 2015-12-16 A | 2015-12-16 A | 8260SWTDn0207 | 100% | 2016-04-01 | 2016-04-03 |  | TBM Ground Level Labour [300 h]; TBM Back Up and Support Labour [3000 h]; TBM Operators [600 h] | 826_AB | D | 826 | D | 2610 | TUNN | DT |  |  |
| 8260SWTDn0220 |  | Dismantle S623 Wagon #1 & Remove |  | 2d | 2015-12-17 A | 2015-12-17 A | 8260SWTDn0208 | 100% | 2016-04-01 | 2016-04-02 |  | TBM Ground Level Labour [200 h]; TBM Back Up and Support Labour [200 h]; General Civil Engineering Labour [160 h] | 826_AB |  |  |  |  |  |  |  |  |
| 8260SWTDn0230 |  | Dismantle S623 Wagon #2 & Remove |  | 2d | 2015-12-17 A | 2015-12-17 A | 8260SWTDn0220 | 100% | 2016-04-01 | 2016-04-02 |  | TBM Ground Level Labour [200 h]; TBM Back Up and Support Labour [200 h]; General Civil Engineering Labour [160 h] | 826_AB |  |  |  |  |  |  |  |  |
| 8260SWTDn0240 |  | Dismantle S623 Wagon #3 & Remove |  | 2d | 2015-12-18 A | 2015-12-18 A | 8260SWTDn0230 | 100% | 2016-04-01 | 2016-04-02 |  | TBM Ground Level Labour [200 h]; TBM Back Up and Support Labour [200 h]; General Civil Engineering Labour [160 h] | 826_AB |  |  |  |  |  |  |  |  |
| 8260SWTDn0250 |  | Dismantle S623 Wagon #4 & Remove |  | 2d | 2015-12-19 A | 2015-12-19 A | 8260SWTDn0240 | 100% | 2016-04-01 | 2016-04-02 |  | TBM Ground Level Labour [200 h]; TBM Back Up and Support Labour [200 h]; General Civil Engineering Labour [160 h] | 826_AB |  |  |  |  |  |  |  |  |
| 8260SWTDn0260 |  | Dismantle S623 Wagon #5 & Remove |  | 2d | 2015-12-21 A | 2015-12-23 A | 8260SWTDn0250 | 100% | 2016-04-01 | 2016-04-02 |  | TBM Ground Level Labour [200 h]; TBM Back Up and Support Labour [6000 h]; General Civil Engineering Labour [160 h] | 826_AB | D | 826 | D | 2610 | TUNN | DT | 826_ABV |  |
| 8260SWTDn0290 |  | Site clearance |  | 180d | 2015-12-24 A | 2016-07-07 A | 8260IF825007 SF, 8260SWTDn0260 | 100% | 2016-04-01 | 2016-09-27 |  | General Civil Engineering Labour [14400 h]; TBM Back Up and Support Labour [18000 h] | 826_AB |  |  |  |  |  |  |  |  |
| 8260SWTDn0270 |  | Transport TBM components from site to the ferry pier at night - 623N1 | milestone | 0d | 2016-06-23 A | 2016-06-23 A | 8260SWTDn0204, 8260SWTUp0270 FS+61d | 100% |  |  | start on or after 2016-06-23 |  | 826_AB |  |  |  |  |  |  |  |  |
| 8260SWTDn0280 |  | Transport TBM components from site to the ferry pier at night - 623N2 | milestone | 0d | 2016-07-07 A | 2016-07-07 A | 8260SWTDn0230, 8260SWTUp0280 FS+61d, 8260SWTDn0270 | 100% | 2016-12-01 | 2016-12-01 | start on or after 2016-07-07 |  | 826_AB |  |  |  |  |  |  |  |  |
|  | 30 | **Up Track - Ch.115+940 to Ch.117+413** |  |  | 2014-03-12 | 2015-08-17 |  |  |  |  |  |  |  |  |  |  |  |  |  |  |  |
| 8260SWTUp0030 |  | Anticipated handover at Boundary from GSG Contractor |  | 1d | 2014-03-12 A | 2014-03-12 A | 8260PD0020 FS+1d | 100% | 2013-05-10 | 2013-05-11 |  |  | 826_AB |  |  |  |  |  |  | 826_ABV | 0428 |
| 8260SWTUp0040 |  | Continue S624 drive, ch. 115+939 to ch. 115+950 in soil |  | 1d | 2014-03-13 A | 2014-03-26 A | 8260SWTUp0030 | 100% | 2014-05-09 | 2014-05-10 |  | STP Support Ground Level Labour [104 h]; TBM Ground Level Labour [130 h]; TBM Back Up and Support Labour; Probing & Grouting Labour; Tunnel Segment Labour (Installation) [371 h]; TBM Operators [185 h]; Excavated Materials [222.8 m3]; Tunnel Segment Rings (Installation) [5.5 NO] | 826_AB | D | 826 | C | 2610 | TUNN | DT |  | 0428 |
| 8260SWTUp0050 |  | Continue S624 drive, ch. 115+950 to ch. 115+987 in mixed ground |  | 4d | 2014-03-27 A | 2014-04-16 A | 8260SWTUp0040 | 100% | 2014-05-09 | 2014-05-13 |  | STP Support Ground Level Labour [352 h]; TBM Ground Level Labour [440 h]; TBM Back Up and Support Labour; Probing & Grouting Labour; Tunnel Segment Labour (Installation) [591 h]; TBM Operators [296 h]; Excavated Materials [749.3 m3]; Tunnel Segment Rings (Installation) [18.5 NO] | 826_AB | D | 826 | C | 2610 | TUNN | DT |  | 0428 |
| 8260SWTUp0060 |  | Continue S624 drive, ch. 115+987 to ch. 116+050 in soil |  | 7d | 2014-04-17 A | 2014-05-04 A | 8260SWTUp0050 | 100% | 2014-04-01 | 2014-04-08 |  | STP Support Ground Level Labour [592 h]; TBM Ground Level Labour [740 h]; TBM Back Up and Support Labour [2790 h]; Probing & Grouting Labour [1116 h]; Tunnel Segment Labour (Installation) [1116 h]; TBM Operators [558 h]; Excavated Materials [1280.61 m3]; Tunnel Segment Rings (Installation) [31.62 NO] | 826_AB | D | 826 | C | 2610 | TUNN | DT |  | 0428 |
| 8260SWTUp0070 |  | Continue S624 drive, ch. 116+050 to ch. 116+226 in mixed ground |  | 31d | 2014-05-05 A | 2014-08-02 A | 8260SWTUp0060 | 100% | 2014-06-01 | 2014-07-02 |  | STP Support Ground Level Labour [2496 h]; TBM Ground Level Labour [3120 h]; TBM Back Up and Support Labour [7299 h]; Probing & Grouting Labour [2919 h]; Tunnel Segment Labour (Installation) [3156 h]; TBM Operators [1578 h]; Excavated Materials [3568.91 m3]; Tunnel Segment Rings (Installation) [89.42 NO] | 826_AB | D | 826 | C | 2610 | TUNN | DT |  | 0428 |
| 8260SWTUp0080 |  | Continue S624 drive, ch. 116+226 to ch. 116+240 in soil/marble |  | 2d | 2014-08-03 A | 2014-08-11 A | 8260SWTUp0070 | 100% | 2014-08-01 | 2014-08-03 |  | STP Support Ground Level Labour [192 h]; TBM Ground Level Labour [240 h]; TBM Back Up and Support Labour [618 h]; Probing & Grouting Labour [252 h]; Tunnel Segment Labour (Installation) [252 h]; TBM Operators [126 h]; Excavated Materials [289.17 m3]; Tunnel Segment Rings (Installation) [7 NO] | 826_AB | D | 826 | C | 2610 | TUNN | DT |  | 0428 |
| 8260SWTUp0090 |  | Continue S624 drive, ch. 116+240 to ch. 116+270 in marble |  | 12d | 2014-08-12 A | 2014-08-29 A | 8260SWTUp0080 | 100% | 2014-08-01 | 2014-08-13 |  | STP Support Ground Level Labour [960 h]; TBM Ground Level Labour [1200 h]; TBM Back Up and Support Labour [3000 h]; Probing & Grouting Labour [1200 h]; Tunnel Segment Labour (Installation) [1200 h]; TBM Operators [600 h]; Excavated Materials [608 m3]; Tunnel Segment Rings (Installation) [15 NO] | 826_AB | D | 826 | C | 2610 | TUNN | DT |  | 0428 |
| 8260SWTUp0100 |  | Continue S624 drive, ch. 116+270 to ch. 116+300 in marble |  | 15d | 2014-08-30 A | 2014-09-27 A | 8260SWTUp0090 | 100% | 2014-08-01 | 2014-08-16 |  | STP Support Ground Level Labour [1200 h]; TBM Ground Level Labour [1500 h]; TBM Back Up and Support Labour [3000 h]; Probing & Grouting Labour [1200 h]; Tunnel Segment Labour (Installation) [1200 h]; TBM Operators [600 h]; Excavated Materials [608 m3]; Tunnel Segment Rings (Installation) [15 NO] | 826_AB | D | 826 | C | 2610 | TUNN | DT |  | 0428 |
| 8260SWTUp0110 |  | Continue S624 drive, ch. 116+300 to ch. 116+329 in marble |  | 15d | 2014-09-28 A | 2014-10-31 A | 8260SWTUp0100 | 100% | 2014-10-01 | 2014-10-16 |  | STP Support Ground Level Labour [1200 h]; TBM Ground Level Labour [1500 h]; TBM Back Up and Support Labour [2900 h]; Probing & Grouting Labour [1160 h]; Tunnel Segment Labour (Installation) [1164 h]; TBM Operators [582 h]; Excavated Materials [589.76 m3]; Tunnel Segment Rings (Installation) [14.55 NO] | 826_AB | D | 826 | C | 2610 | TUNN | DT |  | 0428 |
| 8260SWTUp0120 |  | Continue S624 drive, ch. 116+329 to ch. 116+358 in marble |  | 17d | 2014-11-01 A | 2014-11-22 A | 8260PRTLS1208, 8260SWTUp0110 | 100% | 2014-11-01 | 2014-11-17 |  | STP Support Ground Level Labour [1360 h]; TBM Ground Level Labour [1700 h]; TBM Back Up and Support Labour [2900 h]; Probing & Grouting Labour [1160 h]; Tunnel Segment Labour (Installation) [1164 h]; TBM Operators [582 h]; Excavated Materials [589.76 m3]; Tunnel Segment Rings (Installation) [14.55 NO] | 826_AB | D | 826 | C | 2610 | TUNN | DT |  | 0428 |
| 8260SWTUp0130 |  | Continue S624 drive, ch. 116+358 to ch. 116+388 in marble |  | 10d | 2014-11-23 A | 2014-12-04 A | 8260SWTUp0120, 8260PRTLS1208 | 100% | 2014-11-23 | 2014-12-02 |  | STP Support Ground Level Labour [800 h]; TBM Ground Level Labour [1000 h]; TBM Back Up and Support Labour [3000 h]; Probing & Grouting Labour [1200 h]; Tunnel Segment Labour (Installation) [1200 h]; TBM Operators [600 h]; Excavated Materials [608 m3]; Tunnel Segment Rings (Installation) [15 NO] | 826_AB | D | 826 | C | 2610 | TUNN | DT |  | 0428 |
| 8260SWTUp0140 |  | Continue S624 drive, ch. 116+388 to ch. 116+415 in marble |  | 1d | 2014-12-05 A | 2014-12-11 A | 8260SWTUp0130, 8260PRTLS1209 | 100% | 2015-01-02 | 2015-01-02 |  | STP Support Ground Level Labour [80 h]; TBM Ground Level Labour [100 h]; TBM Back Up and Support Labour [2700 h]; Probing & Grouting Labour [1080 h]; Tunnel Segment Labour (Installation) [1080 h]; TBM Operators [540 h]; Excavated Materials [547.2 m3]; Tunnel Segment Rings (Installation) [14 NO] | 826_AB | D | 826 | C | 2610 | TUNN | DT |  | 0428 |
| 8260SWTUp0150 |  | Continue S624 drive, ch. 116+415 to ch. 116+430 in soil/marble |  | 3d | 2014-12-12 A | 2014-12-19 A | 8260SWTUp0140, 8260PRTLS1209 | 100% | 2015-01-11 | 2015-01-13 |  | STP Support Ground Level Labour [240 h]; TBM Ground Level Labour [300 h]; TBM Back Up and Support Labour [662 h]; Probing & Grouting Labour [265 h]; Tunnel Segment Labour (Installation) [264 h]; TBM Operators [132 h]; Excavated Materials [302.94 m3]; Tunnel Segment Rings (Installation) [7.48 NO] | 826_AB | D | 826 | C | 2610 | TUNN | DT |  | 0428 |
| 8260SWTUp0155 |  | Continue S624 drive, ch. 116+430 to ch. 116+600 in soil |  | 30d | 2014-12-20 A | 2015-01-20 A | 8260PRTLS1209, 8260SWTUp0150 | 100% | 2015-01-13 | 2015-02-11 |  | STP Support Ground Level Labour [2400 h]; TBM Ground Level Labour [3000 h]; TBM Operators [1500 h]; Tunnel Segment Labour (Installation) [3000 h]; Tunnel Segment Rings (Installation) [85 NO]; Excavated Materials [3442.5 m3]; Probing & Grouting Labour [3000 h]; TBM Back Up and Support Labour [7500 h] | 826_AB |  |  |  |  |  |  |  | 0428 |
| 8260SWTUp0157 |  | Continue S624 drive, ch. 116+600 to ch. 116+850 in soil/Alluv. zone |  | 44d | 2015-01-21 A | 2015-04-21 A | 8260GV0040, 8260PRTLS1210, 8260SWTUp0155 | 100% | 2015-01-21 | 2015-03-05 |  | TBM Ground Level Labour [4400 h]; Excavated Materials [5065.16 m3]; Probing & Grouting Labour [6672 h]; TBM Back Up and Support Labour [16680 h]; Tunnel Segment Labour (Installation) [6672 h]; Tunnel Segment Rings (Installation) [111.2 NO]; TBM Operators [3336 h]; STP Support Ground Level Labour [3520 h] | 826_AB |  |  |  |  |  |  |  | 0428 |
| 8260SWTUp0159 |  | Continue S624 drive, ch. 116+850 to ch. 116+930 in Alluv. zone |  | 14d | 2015-04-22 A | 2015-05-23 A | 8260PRTLS1211, 8260SWTUp0157 | 100% | 2015-03-31 | 2015-04-13 |  | STP Support Ground Level Labour [1120 h]; TBM Ground Level Labour [1400 h]; Excavated Materials [1624.86 m3]; Probing & Grouting Labour [1416 h]; TBM Back Up and Support Labour [3540 h]; TBM Operators [708 h]; Tunnel Segment Labour (Installation) [1416 h]; Tunnel Segment Rings (Installation) [40.12 NO] | 826_AB |  |  |  |  |  |  |  | 0428 |
| 8260SWTUp0160 |  | Continue S624 drive, ch. 116+930 to ch. 117+413 in soil at Mai Po |  | 86d | 2015-05-24 A | 2015-08-09 A | 8260PRTLS1212 SS, 8260SWTUp0159 | 100% | 2015-07-16 | 2015-10-09 |  | STP Support Ground Level Labour [6880 h]; TBM Ground Level Labour [8600 h]; TBM Back Up and Support Labour [21309 h]; Probing & Grouting Labour [8524 h]; Tunnel Segment Labour (Installation) [8520 h]; TBM Operators [4260 h]; Excavated Materials [9776.7 m3]; Tunnel Segment Rings (Installation) [242 NO] | 826_AB | D | 826 | C | 2610 | TUNN | DT |  | 0428 |
| 8260SWTUp0165 |  | Pre-coring at diaphragm wall after TBM S624 arrival |  | 3d | 2015-08-10 A | 2015-08-16 A | 8260SWTUp0160 | 100% | 2015-08-15 | 2015-08-17 |  | TBM Ground Level Labour [300 h] | 826_AB |  |  |  |  |  |  |  |  |
| 8260SWTUp0170 |  | TBM S624 breakthrough at Mai Po Shaft |  | 1d | 2015-08-17 A | 2015-08-17 A | 8260IF825002, 8260IF825003, 8260IF825004, 8260SWTUp0165, 8260IF825005, 8260IF825001 | 100% | 2015-09-29 | 2015-09-29 |  | TBM Ground Level Labour [100 h]; TBM Back Up and Support Labour [300 h]; Probing & Grouting Labour [120 h]; Tunnel Segment Labour (Installation) [120 h]; TBM Operators [60 h]; Excavated Materials; Tunnel Segment Rings (Installation) | 826_AB | D | 826 | C | 2610 | TUNN | DT | 826_ABV | 0428 |

| ID | WBS | Activity | Type | Duration | Start | Finish | Predecessors | Complete | Planned start | Planned finish | Constraint | Resources | REVISION | CONTRACTS | COST CENTRE | LOCATION OF WORK | SUB-LOCATION OF | AREAS / ROOMS | 826_As-built | 826_As-built_verified |
| --- | --- | --- | --- | --- | --- | --- | --- | --- | --- | --- | --- | --- | --- | --- | --- | --- | --- | --- | --- | --- |
|  | 2 | **TBM Removal Preparation** |  |  | 2014-11-25 | 2015-08-29 |  |  |  |  |  |  |  |  |  |  |  |  |  |  |
| 8260TBMRP0180 |  | Prepare TTMS report for removal of TBM S624 & S623 |  | 15d | 2014-11-25 A | 2015-02-17 A | 8260SWTUp0120, 8260JETG0140 | 100% | 2014-12-01 | 2014-12-15 |  |  | D | 826 | C | 2610 | TUNN | DT | 826_AB |  |
| 8260TBMRP0181 |  | Working Group Meeting & SLG Meeting |  | 90d | 2014-12-16 A | 2014-12-16 A | 8260TBMRP0180 SS | 100% | 2015-01-16 | 2015-04-15 |  |  |  |  |  |  |  |  | 826_AB |  |
| 8260TBMRP0182 |  | Drawings' approval and endosement from RDO |  | 15d | 2015-02-17 A | 2015-08-29 A | 8260TBMRP0180 | 100% | 2015-02-23 | 2015-03-09 |  |  |  |  |  |  |  |  | 826_AB |  |
| 8260TBMRP0210 |  | Proof drilling for water tightness test of jet grout block |  | 7d | 2015-06-11 A | 2015-06-17 A | 8260SWTUp0160 | 100% | 2015-07-01 | 2015-07-07 |  | Drilling and Grouting Labour [560 h] |  |  |  |  |  |  | 826_AB |  |
| 8260TBMRP0184 |  | On stie preparation works |  | 38d | 2015-06-25 A | 2015-08-17 A | 8260TBMRP0182 | 100% | 2015-07-13 | 2015-08-19 |  | TBM Ground Level Labour [3600 h] |  |  |  |  |  |  | 826_AB |  |
| 8260TBMRP0240 |  | Moving device and cradle installation |  | 28d | 2015-06-25 A | 2015-08-17 A | 8260TBMRP0230 | 100% | 2015-07-23 | 2015-08-19 |  | TBM Back Up and Support Labour [2240 h] |  |  |  |  |  |  | 826_AB |  |
| 8260TBMRP0230 |  | Shaft bottom slab levelling |  | 2d | 2015-07-20 A | 2015-07-22 A | 8260TBMRP0210 | 100% | 2015-07-24 | 2015-07-25 |  | Concrete Construction Labour [160 h] |  |  |  |  |  |  | 826_AB |  |
| 8260TBMRP0183 |  | Submit advance notice to the HK Police |  | 7d | 2015-08-10 A | 2015-08-17 A | 8260SWTUp0160 SS+10d | 100% | 2015-11-05 | 2015-11-11 |  |  |  |  |  |  |  |  | 826_AB |  |
|  | 40 | **S624 TBM Removal** |  |  | 2015-08-18 | 2015-10-30 |  |  |  |  |  |  |  |  |  |  |  |  |  |  |
| 8260SWTUp0192 |  | Move TBM S624 front portion to cradle |  | 6d | 2015-08-18 A | 2015-09-01 A | 8260SWTUp0170, 8260PD0040, 8260TBMRP0184, 8260TBMRP0240, 8260TBMRP0183, 8260TBMRP0230, 8260PRTLS1216, 8260TBMRP0181 | 100% | 2015-10-13 | 2015-10-18 |  | Temporary Works Steelworker [480 h]; Temporary Works Steel [7.5 t]; TBM Back Up and Support Labour [480 h] |  |  |  |  |  |  | 826_AB |  |
| 8260SWTUp0193 |  | Weld additional bracing brackets "corbels" |  | 7d | 2015-09-07 A | 2015-09-10 A | 8260SWTUp0192 | 100% | 2015-09-29 | 2015-10-05 |  | Temporary Works Steelworker [560 h]; Temporary Works Steel [8.75 t] |  |  |  |  |  |  | 826_AB |  |
| 8260SWTUp0194 |  | Install cradle on lateral shifting system |  | 3d | 2015-09-11 A | 2015-09-11 A | 8260SWTUp0193 | 100% | 2015-09-29 | 2015-10-01 |  | Temporary Works Steelworker [240 h]; TBM Back Up and Support Labour [240 h] |  |  |  |  |  |  | 826_AB |  |
| 8260SWTUp0195 |  | Move and shift TBM to dismantle location |  | 5d | 2015-09-12 A | 2015-09-18 A | 8260SWTUp0194 | 100% | 2015-09-29 | 2015-10-03 |  | TBM Back Up and Support Labour [3000 h]; TBM Operators [600 h] | D | 826 | C | 2610 | TUNN | DT | 826_AB |  |
| 8260SWTUp0200 |  | Dismantle Cutter Head & Remove |  | 5d | 2015-09-19 A | 2015-09-25 A | 8260SWTUp0195 | 100% | 2015-09-29 | 2015-10-03 |  | TBM Ground Level Labour [500 h]; TBM Back Up and Support Labour [7500 h]; TBM Operators [1500 h] | D | 826 | C | 2610 | TUNN | DT | 826_AB |  |
| 8260SWTUp0202 |  | Dismantle TBM front sheild & Remove |  | 5d | 2015-09-26 A | 2015-09-29 A | 8260SWTUp0200 | 100% | 2015-09-29 | 2015-10-03 |  | TBM Ground Level Labour [500 h]; TBM Back Up and Support Labour [500 h]; TBM Operators [240 h] |  |  |  |  |  |  | 826_AB |  |
| 8260SWTUp0204 |  | Dismantle segment installation machine & Remove |  | 4d | 2015-09-30 A | 2015-10-03 A | 8260SWTUp0202 | 100% | 2015-11-05 | 2015-11-08 |  | TBM Ground Level Labour [400 h]; TBM Back Up and Support Labour [500 h]; TBM Operators [240 h] |  |  |  |  |  |  | 826_AB |  |
| 8260SWTUp0206 |  | Dismantle TBM middle sheild & Remove |  | 3d | 2015-10-05 A | 2015-10-07 A | 8260SWTUp0204 | 100% | 2015-11-05 | 2015-11-07 |  | TBM Ground Level Labour [300 h]; TBM Back Up and Support Labour [6000 h]; TBM Operators [1200 h] | D | 826 | C | 2610 | TUNN | DT | 826_AB |  |
| 8260SWTUp0207 |  | Dismantle TBM rear sheild & Remove |  | 3d | 2015-10-08 A | 2015-10-08 A | 8260SWTUp0206 | 100% | 2015-11-05 | 2015-11-07 |  | TBM Ground Level Labour [300 h]; TBM Back Up and Support Labour [500 h]; TBM Operators [240 h] |  |  |  |  |  |  | 826_AB |  |
| 8260SWTUp0208 |  | Dismantle S624 Link Bridge & Remove |  | 3d | 2015-10-09 A | 2015-10-10 A | 8260SWTUp0207 | 100% | 2015-11-05 | 2015-11-07 |  | TBM Ground Level Labour [300 h]; TBM Back Up and Support Labour [3000 h]; TBM Operators [600 h] | D | 826 | C | 2610 | TUNN | DT | 826_AB |  |
| 8260SWTUp0220 |  | Dismantle S624 Wagon #1 & Remove |  | 2d | 2015-10-12 A | 2015-10-15 A | 8260SWTUp0208 | 100% | 2015-11-05 | 2015-11-06 |  | TBM Ground Level Labour [200 h]; TBM Back Up and Support Labour [200 h]; General Civil Engineering Labour [160 h] |  |  |  |  |  |  | 826_AB |  |
| 8260SWTUp0270 |  | Transport TBM components from site to the ferry pier at night - 624N1 | milestone | 0d | 2015-10-15 A | 2015-10-15 A | 8260SWTUp0204 | 100% | 2015-11-05 | 2015-11-05 | start on or after 2015-10-15 |  |  |  |  |  |  |  | 826_AB |  |
| 8260SWTUp0230 |  | Dismantle S624 Wagon #2 & Remove |  | 2d | 2015-10-16 A | 2015-10-16 A | 8260SWTUp0220 | 100% | 2015-11-05 | 2015-11-06 |  | TBM Ground Level Labour [200 h]; TBM Back Up and Support Labour [200 h]; General Civil Engineering Labour [160 h] |  |  |  |  |  |  | 826_AB |  |
| 8260SWTUp0240 |  | Dismantle S624 Wagon #3 & Remove |  | 2d | 2015-10-16 A | 2015-10-16 A | 8260SWTUp0230 | 100% | 2015-11-05 | 2015-11-06 |  | TBM Ground Level Labour [200 h]; TBM Back Up and Support Labour [200 h]; General Civil Engineering Labour [160 h] |  |  |  |  |  |  | 826_AB |  |
| 8260SWTUp0250 |  | Dismantle S624 Wagon #4 & Remove |  | 2d | 2015-10-17 A | 2015-10-17 A | 8260SWTUp0240 | 100% | 2015-11-05 | 2015-11-06 |  | TBM Ground Level Labour [200 h]; TBM Back Up and Support Labour [200 h]; General Civil Engineering Labour [160 h] |  |  |  |  |  |  | 826_AB |  |
| 8260SWTUp0260 |  | Dismantle S624 Wagon #5 & Remove |  | 2d | 2015-10-19 A | 2015-10-22 A | 8260SWTUp0250 | 100% | 2015-11-05 | 2015-11-06 |  | TBM Ground Level Labour [200 h]; TBM Back Up and Support Labour [6000 h]; General Civil Engineering Labour [160 h] | D | 826 | C | 2610 | TUNN | DT | 826_AB | 826_ABV |
| 8260SWTUp0280 |  | Transport TBM components from site to the ferry pier at night - 624N2 | milestone | 0d | 2015-10-30 A | 2015-10-30 A | 8260SWTUp0230 | 100% | 2015-11-05 | 2015-11-05 | start on or after 2015-10-30 |  |  |  |  |  |  |  | 826_AB |  |

| ID | WBS | Activity | Duration | Start | Finish | Predecessors | Complete | Planned start | Planned finish | Resources | user_text1 | REVISION | CONTRACTS | COST CENTRE | LOCATION OF WORK | SUB-LOCATION OF | 826_As-built |
| --- | --- | --- | --- | --- | --- | --- | --- | --- | --- | --- | --- | --- | --- | --- | --- | --- | --- |
|  | 40 | **Cross Passages (HK)** |  | 2014-09-18 | 2016-03-31 |  |  |  |  |  |  |  |  |  |  |  |  |
|  | 7 | **Freezing Station A** |  | 2014-09-23 | 2016-01-02 |  |  |  |  |  |  |  |  |  |  |  |  |
| 8260SWXPA0100 |  | Erect Freezing Station Platform | 11d | 2014-09-23 A | 2014-10-31 A | 8260SWMP0170, 8260SWTUp0100 FS+14d | 100% | 2014-10-11 | 2014-10-21 | Freeze Plant Support Labour [880 h]; Temporary Works Steelworker [880 h]; Temporary Works Steel [13.75 t] | 0428 | D | 826 | E | 2610 | CP | 826_AB |
| 8260SWXPA0110 |  | Freezing Station Installation & Testing | 31d | 2014-11-01 A | 2015-02-06 A | 8260SWXPA0100 | 100% | 2015-01-01 | 2015-01-31 | Freeze Plant Support Labour [2400 h]; MEP Installation Labour [2480 h] |  |  |  |  |  |  | 826_AB |
| 8260SWXPA0120 |  | Remove Freezing Station A | 5d | 2015-11-05 A | 2016-01-02 A | 8260SWXP30097 | 100% | 2015-11-05 | 2015-11-09 | Freeze Plant Support Labour [384 h]; MEP Installation Labour [400 h] |  |  |  |  |  |  | 826_AB |
|  | 1 | **Cross Passage #1. Ch.116+030** |  | 2014-09-18 | 2015-10-17 |  |  |  |  |  |  |  |  |  |  |  |  |
| 8260SWXP10030 |  | Erect Temporary Drilling Platform | 10d | 2014-09-18 A | 2014-09-23 A | 8260PW0320, 8260DS0365, 8260SWTUp0070 | 100% | 2014-10-01 | 2014-10-10 | Temporary Works Steelworker [800 h]; Temporary Works Steel [12.5 t] | 0428 | D | 826 | E | 2610 | CP | 826_AB |
| 8260SWXP10040 |  | Drill & Install Freezing Pipe | 45d | 2014-12-12 A | 2015-02-02 A | 8260SWXP10030 | 100% | 2014-12-01 | 2015-01-14 | Freeze Plant Support Labour [1260 h]; Drilling and Grouting Labour [3600 h] |  | D | 826 | E | 2610 | CP | 826_AB |
| 8260SWXP10042 |  | Install temporary support including ring support (Up-track) | 15d | 2015-02-01 A | 2015-02-10 A | 8260SWXP10040 | 100% | 2015-02-01 | 2015-02-15 | Structural Steel [150 t]; Temporary Works Steelworker [1200 h]; Temporary Works Steel [18.75 t] |  |  |  |  |  |  | 826_AB |
| 8260SWXP10048 |  | Install freezing & monitoring system | 6d | 2015-02-02 A | 2015-02-08 A | 8260SWXP10042 SS | 100% | 2015-02-23 | 2015-02-28 | Freeze Plant Support Labour [480 h]; MEP Installation Labour [480 h] |  |  |  |  |  |  | 826_AB |
| 8260SWXP10050 |  | Conduct Ground Freezing | 45d | 2015-02-07 A | 2015-04-06 A | 8260SWXP10048 | 100% | 2015-03-01 | 2015-04-14 | Ground Freezing Labour, at the face [6750 h]; Freeze Plant Support Labour [3600 h] |  |  |  |  |  |  | 826_AB |
| 8260SWXP10043 |  | Install temporary support including ring support (Down-track) | 12d | 2015-02-16 A | 2015-02-26 A | 8260SWXP10040 SS+40d | 100% | 2015-02-23 | 2015-03-06 | Structural Steel [120 t]; Temporary Works Steelworker [960 h]; Temporary Works Steel [15 t] |  |  |  |  |  |  | 826_AB |
| 8260SWXP10045 |  | Intall safe door | 5d | 2015-03-29 A | 2015-04-01 A | 8260SWXP10042 SS | 100% | 2015-04-21 | 2015-04-25 | Temporary Works Steelworker [400 h]; Temporary Works Steel [6.25 t] |  |  |  |  |  |  | 826_AB |
| 8260SWXP10055 |  | Maintain ground freezing during construction of CP | 55d | 2015-04-07 A | 2015-09-12 A | 8260SWXP10043, 8260SWXP10050 | 100% | 2015-04-21 | 2015-06-14 | Ground Freezing Labour, at the face [9000 h]; Freeze Plant Support Labour [4400 h] |  |  |  |  |  |  | 826_AB |
| 8260SWXP10057 |  | Tunnel segment cutting & removal | 2d | 2015-04-20 A | 2015-04-21 A | 8260SWXP10045, 8260SWXP10050 | 100% | 2015-04-21 | 2015-04-22 | General Civil Engineering Labour [160 h] |  |  |  |  |  |  | 826_AB |
| 8260SWXP10060 |  | Excavate and temporary support | 33d | 2015-04-22 A | 2015-07-02 A | 8260SWXP10057, 8260SWXP10050 | 100% | 2015-04-21 | 2015-05-23 | Excavation and backfilling labour [5040 h]; Temporary Works Steelworker [5040 h]; Excavated Materials [155 m3]; Temporary Works Steel [41.25 t] |  |  | 826 | E | 2610 | CP | 826_AB |
| 8260SWXP10065 |  | Tunnel segment removal | 7d | 2015-06-15 A | 2015-06-16 A | 8260SWXP10060 | 100% | 2015-08-04 | 2015-08-10 | General Civil Engineering Labour [160 h] |  |  |  |  |  |  | 826_AB |
| 8260SWXP10068 |  | Earthing, Waterproof works and waterproof test | 7d | 2015-07-12 A | 2015-07-30 A | 8260SWXP10065 | 100% | 2015-07-03 | 2015-07-09 | General Civil Engineering Labour [240 h] |  |  |  |  |  |  | 826_AB |
| 8260SWXP10073 |  | Lining reinforcement fixing and formwork (floor) | 6d | 2015-08-05 A | 2015-08-14 A | 8260SWXP10070 | 100% | 2015-09-29 | 2015-10-04 | Concrete Construction Labour [480 h]; Formwork [7.5 m2]; Reinforceing steel [7.5 t] |  |  |  |  |  |  | 826_AB |
| 8260SWXP10070 |  | Portal works | 10d | 2015-08-09 A | 2015-08-10 A | 8260SWXP10068 | 100% | 2015-09-29 | 2015-10-08 | Concrete Construction Labour [2400 h]; Temporary Works Steelworker [760 h]; Grade 20 Lean Mix Concrete [13 m3]; Grade 40 Concrete [74 m3]; Formwork [201 m2]; Reinforceing steel [45 t]; Structural Steel [5 t]; Temporary Works Steel [18 t] |  |  | 826 | E | 2610 | CP | 826_AB |
| 8260SWXP10076 |  | Lining concreting (floor) | 1d | 2015-08-15 A | 2015-08-15 A | 8260SWXP10073 | 100% | 2015-09-29 | 2015-09-29 | Concrete Construction Labour [80 h]; Grade 40 Concrete [1.25 m3] |  |  |  |  |  |  | 826_AB |
| 8260SWXP10078 |  | Lining concrete curing (floor) | 1d | 2015-08-16 A | 2015-08-16 A | 8260SWXP10076 | 100% | 2015-09-29 | 2015-09-29 | Concrete Construction Labour [80 h] |  |  |  |  |  |  | 826_AB |
| 8260SWXP10080 |  | Lining reinforcement fixing and formwork (side walls and roof) | 3d | 2015-08-31 A | 2015-08-31 A | 8260SWXP10078 | 100% | 2015-09-29 | 2015-10-01 | Concrete Construction Labour [240 h]; Reinforceing steel [3.75 t]; Formwork [3.75 m2]; Grade 40 Concrete [3.75 m3] |  |  |  |  |  |  | 826_AB |
| 8260SWXP10082 |  | Lining concreting (side walls and roof) | 2d | 2015-09-01 A | 2015-09-01 A | 8260SWXP10080 | 100% | 2015-09-29 | 2015-09-30 | Grade 40 Concrete [2.5 m3]; Concrete Construction Labour [160 h] |  |  |  |  |  |  | 826_AB |
| 8260SWXP10090 |  | Lining concrete curing (side walls and roof) | 3d | 2015-09-02 A | 2015-09-02 A | 8260SWXP10082 | 100% | 2015-09-29 | 2015-10-01 | Concrete Construction Labour [240 h] |  |  | 826 | E | 2610 | CP | 826_AB |
| 8260SWXP10097 |  | Concrete achieved the design strength | 4d | 2015-09-03 A | 2015-09-07 A | 8260SWXP10090 | 100% | 2015-09-29 | 2015-10-02 |  |  |  |  |  |  |  | 826_AB |
| 8260SWXP10093 |  | Remove formwork | 2d | 2015-09-09 A | 2015-09-13 A | 8260SWXP10090 | 100% | 2015-09-29 | 2015-09-30 | Concrete Construction Labour [160 h] |  |  |  |  |  |  | 826_AB |
| 8260SWXP10098 |  | Remove temporary works | 7d | 2015-09-12 A | 2015-09-17 A | 8260SWXP10097 | 100% | 2015-09-29 | 2015-10-05 | General Civil Engineering Labour [560 h] |  |  |  |  |  |  | 826_AB |
| 8260SWXP10100 |  | Remove Freezing Plant | 3d | 2015-09-13 A | 2015-09-14 A | 8260SWXP10055, 8260SWXP10098, 8260SWXP10090, 8260SWXP10093 | 100% | 2015-09-29 | 2015-10-01 | Ground Freezing Labour, at the face [1360 h]; Freeze Plant Support Labour [80 h] |  |  |  |  |  |  | 826_AB |
| 8260SWXP10140 |  | Make Good Freezing Pipe Hole | 10d | 2015-09-18 A | 2015-09-18 A | 8260SWXP10130 | 100% | 2016-05-01 | 2016-05-10 | Drilling and Grouting Labour [240 h] |  |  |  |  |  |  | 826_AB |
| 8260SWXP10130 |  | Thawing & Proof Grouting | 30d | 2015-09-18 A | 2015-10-17 A | 8260SWXP10100 | 100% | 2015-09-29 | 2015-10-28 | Drilling and Grouting Labour [800 h] |  | D | 826 | E | 2610 | CP | 826_AB |

| ID | WBS | Activity | Duration | Start | Finish | Predecessors | Complete | Planned start | Planned finish | Resources | user_text1 | REVISION | CONTRACTS | COST CENTRE | LOCATION OF WORK | SUB-LOCATION OF | 826_As-built |
| --- | --- | --- | --- | --- | --- | --- | --- | --- | --- | --- | --- | --- | --- | --- | --- | --- | --- |
|  | 2 | **Cross Passage #2. Ch.116+195** |  | 2015-02-10 | 2015-11-19 |  |  |  |  |  |  |  |  |  |  |  |  |
| 8260SWXP20030 |  | Erect Temporary Drilling Platform | 3d | 2015-02-10 A | 2015-02-16 A | 8260SWTDn0110 SS | 100% | 2015-02-23 | 2015-02-25 | Temporary Works Steelworker [240 h]; Temporary Works Steel [3.75 t] | 0428 | D | 826 | E | 2610 | CP | 826_AB |
| 8260SWXP20040 |  | Drill & Install Freezing Pipe | 47d | 2015-02-21 A | 2015-04-07 A | 8260SWXP20030 | 100% | 2015-02-23 | 2015-04-10 | Drilling and Grouting Labour [3760 h] |  | D | 826 | E | 2610 | CP | 826_AB |
| 8260SWXP20048 |  | Install freezing & monitoring system | 3d | 2015-04-02 A | 2015-04-08 A | 8260SWXP20042 SS+5d | 100% | 2015-04-21 | 2015-04-23 | Freeze Plant Support Labour [1200 h]; MEP Installation Labour [240 h] |  |  |  |  |  |  | 826_AB |
| 8260SWXP20042 |  | Install temporary support (including ring support) | 15d | 2015-04-02 A | 2015-04-12 A | 8260SWXP20040 | 100% | 2015-04-21 | 2015-05-05 | Structural Steel [150 t]; Temporary Works Steelworker [1200 h]; Temporary Works Steel [18.75 t] |  |  |  |  |  |  | 826_AB |
| 8260SWXP20050 |  | Conduct Ground Freezing | 57d | 2015-04-09 A | 2015-06-09 A | 8260SWXP20048, 8260SWXPA0110, 8260SWXP20040 | 100% | 2015-04-21 | 2015-06-16 | Ground Freezing Labour, at the face [6750 h]; Freeze Plant Support Labour [3600 h] |  | D | 826 | E | 2610 | CP | 826_AB |
| 8260SWXP20045 |  | Install safe door | 4d | 2015-06-01 A | 2015-06-04 A | 8260SWXP20042 SS+5d | 100% |  |  | Temporary Works Steelworker [400 h]; Temporary Works Steel [6.25 t] |  |  |  |  |  |  | 826_AB |
| 8260SWXP20055 |  | Maintain ground freezing during construction of CP | 60d | 2015-06-10 A | 2015-10-18 A | 8260SWXP20050 | 100% | 2015-07-24 | 2015-09-21 | Ground Freezing Labour, at the face [9000 h]; Freeze Plant Support Labour [4400 h] |  |  |  |  |  |  | 826_AB |
| 8260SWXP20057 |  | Tunnel segment cutting & removal | 7d | 2015-06-11 A | 2015-06-12 A | 8260SWXP20050 | 100% | 2015-07-24 | 2015-07-30 | General Civil Engineering Labour [160 h] |  |  |  |  |  |  | 826_AB |
| 8260SWXP20060 |  | Excavate and temporary support | 33d | 2015-06-16 A | 2015-07-28 A | 8260SWXP20050, 8260SWXP20057 | 100% | 2015-07-26 | 2015-08-27 | Excavation and backfilling labour [5040 h]; Excavated Materials [155 m3]; Temporary Works Steel [41.25 t] |  |  | 826 | E | 2610 | CP | 826_AB |
| 8260SWXP20065 |  | Tunnel segment removal | 2d | 2015-07-27 A | 2015-07-31 A | 8260SWXP20060, 8260SWXP20045 | 100% | 2015-08-03 | 2015-08-04 | General Civil Engineering Labour [160 h] |  |  |  |  |  |  | 826_AB |
| 8260SWXP20068 |  | Earthing, Waterproof works and waterproof test | 7d | 2015-08-10 A | 2015-08-19 A | 8260SWXP20065 | 100% | 2015-09-29 | 2015-10-05 | General Civil Engineering Labour [240 h] |  |  |  |  |  |  | 826_AB |
| 8260SWXP20073 |  | Lining reinforcement fixing and formwork (floor) | 6d | 2015-08-20 A | 2015-09-07 A | 8260SWXP20070 | 100% | 2015-09-29 | 2015-10-04 | Concrete Construction Labour [480 h]; Formwork [7.5 m2]; Reinforceing steel [7.5 t] |  |  |  |  |  |  | 826_AB |
| 8260SWXP20070 |  | Portal works | 1d | 2015-08-24 A | 2015-08-24 A | 8260SWXP20068 | 100% | 2015-09-29 | 2015-09-29 | Concrete Construction Labour; Temporary Works Steelworker; Grade 20 Lean Mix Concrete [12 m3]; Grade 40 Concrete [72 m3]; Formwork [195 m2]; Reinforceing steel [45 t]; Structural Steel [5 t]; Temporary Works Steel [17 t] |  |  | 826 | E | 2610 | CP | 826_AB |
| 8260SWXP20076 |  | Lining concreting (floor) | 1d | 2015-09-09 A | 2015-09-09 A | 8260SWXP20073 | 100% | 2015-09-29 | 2015-09-29 | Concrete Construction Labour [80 h]; Grade 40 Concrete [1.25 m3] |  |  |  |  |  |  | 826_AB |
| 8260SWXP20078 |  | Lining concrete curing (floor) | 1d | 2015-09-10 A | 2015-09-10 A | 8260SWXP20076 | 100% | 2015-09-29 | 2015-09-29 | Concrete Construction Labour [80 h] |  |  |  |  |  |  | 826_AB |
| 8260SWXP20080 |  | Lining reinforcement fixing and formwork (side walls and roof) | 3d | 2015-09-11 A | 2015-09-24 A | 8260SWXP20078 | 100% | 2015-09-29 | 2015-10-01 | Concrete Construction Labour [240 h]; Formwork [3.75 m2]; Reinforceing steel [3.75 t] |  |  |  |  |  |  | 826_AB |
| 8260SWXP20082 |  | Lining concreting (side walls and roof) | 2d | 2015-09-25 A | 2015-09-26 A | 8260SWXP20080 | 100% | 2015-09-29 | 2015-09-30 | Grade 40 Concrete [2.5 m3]; Concrete Construction Labour [160 h] |  |  |  |  |  |  | 826_AB |
| 8260SWXP20090 |  | Lining concrete curing (side walls and roof) | 4d | 2015-09-26 A | 2015-10-03 A | 8260SWXP20082 | 100% | 2015-09-29 | 2015-10-02 | Concrete Construction Labour [320 h] |  |  | 826 | E | 2610 | CP | 826_AB |
| 8260SWXP20093 |  | Remove formwork | 2d | 2015-10-04 A | 2015-10-05 A | 8260SWXP20090 | 100% | 2015-11-05 | 2015-11-06 | Concrete Construction Labour [160 h] |  |  |  |  |  |  | 826_AB |
| 8260SWXP20097 |  | Concrete achieved the design strength | 4d | 2015-10-06 A | 2015-10-10 A | 8260SWXP20093 | 100% | 2015-11-05 | 2015-11-08 |  |  |  |  |  |  |  | 826_AB |
| 8260SWXP20098 |  | Remove temporary works | 7d | 2015-10-11 A | 2015-10-18 A | 8260SWXP20097 | 100% | 2015-11-05 | 2015-11-11 | General Civil Engineering Labour [560 h] |  |  |  |  |  |  | 826_AB |
| 8260SWXP20100 |  | Remove Freezing Pipes | 3d | 2015-10-19 A | 2015-10-21 A | 8260SWXP20055, 8260SWXP20098 | 100% | 2015-11-14 | 2015-11-16 | Ground Freezing Labour, at the face [2550 h]; Freeze Plant Support Labour [80 h] |  | D | 826 | E | 2610 | CP | 826_AB |
| 8260SWXP20140 |  | Make Good Freezing Pipe Holes | 10d | 2015-10-20 A | 2015-10-20 A | 8260SWXP20130 | 100% | 2016-04-01 | 2016-04-10 | Drilling and Grouting Labour [160 h] |  |  | 826 | E | 2610 | CP | 826_AB |
| 8260SWXP20130 |  | Thawing & Proof Grouting | 30d | 2015-10-20 A | 2015-11-19 A | 8260SWXP20100 | 100% | 2015-11-05 | 2015-12-04 | Drilling and Grouting Labour [400 h] |  | D | 826 | E | 2610 | CP | 826_AB |

| ID | WBS | Activity | Type | Duration | Start | Finish | Predecessors | Complete | Planned start | Planned finish | Resources | 826_As-built | user_text1 | REVISION | CONTRACTS | COST CENTRE | LOCATION OF WORK | SUB-LOCATION OF |
| --- | --- | --- | --- | --- | --- | --- | --- | --- | --- | --- | --- | --- | --- | --- | --- | --- | --- | --- |
|  | 8 | **Freezing Station B** |  |  | 2015-04-27 | 2016-02-17 |  |  |  |  |  |  |  |  |  |  |  |  |
| 8260SWXPB110 |  | Erect Freezing Station Platform |  | 20d | 2015-04-27 A | 2015-05-20 A | 8260SWXP30030 SS+12d | 100% | 2015-06-01 | 2015-06-20 | Temporary Works Steelworker [1600 h]; Temporary Works Steel [25 t] | 826_AB |  |  |  |  |  |  |
| 8260SWXPB120 |  | Freezing Station Installation & Testing |  | 20d | 2015-06-01 A | 2015-06-20 A | 8260SWXPB110 | 100% | 2015-06-21 | 2015-07-10 | Freeze Plant Support Labour [1600 h]; MEP Installation Labour [1600 h] | 826_AB |  |  |  |  |  |  |
| 8260SWXPB130 |  | Remove Station B |  | 14d | 2015-12-21 A | 2016-02-17 A | 8260SWXP60110, 8260SWXP50094 | 100% | 2016-07-22 | 2016-08-04 | Freeze Plant Support Labour [1120 h] | 826_AB |  |  |  |  |  |  |
|  | 3 | **Cross Passage #3. Ch. 116+445** |  |  | 2015-04-11 | 2016-01-07 |  |  |  |  |  |  |  |  |  |  |  |  |
| 8260SWXP30030 |  | Erect Temporary Drilling Platform |  | 6d | 2015-04-11 A | 2015-04-16 A | 8260SWTDn0155 SS | 100% | 2015-04-21 | 2015-04-26 | Temporary Works Steelworker [240 h]; Temporary Works Steel [3.75 t] | 826_AB | 0428 | D | 826 | E | 2610 | CP |
| 8260SWXP30040 |  | Drill & Install Freezing Pipe |  | 46d | 2015-04-23 A | 2015-06-20 A | 8260SWXP30030 | 100% | 2015-04-21 | 2015-06-05 | Drilling and Grouting Labour [3600 h] | 826_AB |  | D | 826 | E | 2610 | CP |
| 8260SWXP30042 |  | Install temporary support (including ring support) |  | 15d | 2015-06-21 A | 2015-08-03 A | 8260SWXP30040 | 100% | 2015-07-19 | 2015-08-02 | Structural Steel [150 t]; Temporary Works Steelworker [1200 h]; Temporary Works Steel [18.75 t] | 826_AB |  |  |  |  |  |  |
| 8260SWXP30048 |  | Install freezing & monitoring system |  | 3d | 2015-06-22 A | 2015-06-23 A | 8260SWXP30042 SS+5d | 100% | 2015-07-01 | 2015-07-03 | Freeze Plant Support Labour [1200 h]; MEP Installation Labour [240 h] | 826_AB |  |  |  |  |  |  |
| 8260SWXP30050 |  | Conduct Ground Freezing |  | 56d | 2015-06-29 A | 2015-08-26 A | 8260SWXP30040, 8260SWXP30048, 8260SWXPB120 | 100% | 2015-07-04 | 2015-08-28 | Ground Freezing Labour, at the face [6750 h]; Freeze Plant Support Labour [3600 h] | 826_AB |  | D | 826 | E | 2610 | CP |
| 8260SWXP30045 |  | Install safe door |  | 4d | 2015-08-15 A | 2015-08-19 A | 8260SWXP30042 SS+5d | 100% | 2015-09-29 | 2015-10-02 | Temporary Works Steelworker [400 h]; Temporary Works Steel [6.25 t] | 826_AB |  |  |  |  |  |  |
| 8260SWXP30055 |  | Maintain ground freezing during construction of CP | level of effort | 81d | 2015-08-27 A | 2015-10-21 A | 8260SWXP30050 | 100% | 2015-09-29 | 2015-12-18 | Ground Freezing Labour, at the face [9000 h]; Freeze Plant Support Labour [4400 h] | 826_AB |  |  |  |  |  |  |
| 8260SWXP30057 |  | Tunnel segment cutting & removal at U/T |  | 7d | 2015-08-31 A | 2015-09-07 A | 8260SWXP30050 | 100% | 2015-09-29 | 2015-10-05 | General Civil Engineering Labour [560 h] | 826_AB |  |  |  |  |  |  |
| 8260SWXP30065 |  | Tunnel segment removal at D/T |  | 7d | 2015-08-31 A | 2015-09-01 A | 8260SWXP30060, 8260SWXP30045 | 100% | 2015-09-29 | 2015-10-05 | General Civil Engineering Labour [160 h] | 826_AB |  |  |  |  |  |  |
| 8260SWXP30060 |  | Excavate and temporary support |  | 33d | 2015-09-08 A | 2015-09-16 A | 8260SWXP30057, 8260SWXP30050 | 100% | 2015-09-29 | 2015-10-31 | Excavation and backfilling labour [5040 h]; Excavated Materials [1553 m3]; Temporary Works Steel [41.25 t] | 826_AB |  |  | 826 | E | 2610 | CP |
| 8260SWXP30068 |  | Earthing, Waterproof works and waterproof test |  | 7d | 2015-09-17 A | 2015-09-24 A | 8260SWXP30065 | 100% | 2015-09-29 | 2015-10-05 | General Civil Engineering Labour [240 h] | 826_AB |  |  |  |  |  |  |
| 8260SWXP30070 |  | Portal works |  | 30d | 2015-09-25 A | 2015-09-25 A | 8260SWXP30068, 8260SWXP30060 | 100% | 2015-09-29 | 2015-10-28 | Concrete Construction Labour [2400 h]; Temporary Works Steelworker [760 h]; Grade 20 Lean Mix Concrete [11 m3]; Grade 40 Concrete [69 m3]; Formwork [186 m2]; Reinforceing steel [45 t]; Structural Steel [5 t]; Temporary Works Steel [16 t] | 826_AB |  |  | 826 | E | 2610 | CP |
| 8260SWXP30073 |  | Lining reinforcement fixing and formwork (floor) |  | 6d | 2015-09-26 A | 2015-10-01 A | 8260SWXP30070 | 100% | 2015-09-29 | 2015-10-04 | Concrete Construction Labour [480 h]; Reinforceing steel [7.5 t]; Formwork [7.5 m2] | 826_AB |  |  |  |  |  |  |
| 8260SWXP30076 |  | Lining concreting (floor) |  | 1d | 2015-10-02 A | 2015-10-02 A | 8260SWXP30073 | 100% | 2015-11-05 | 2015-11-05 | Concrete Construction Labour [80 h]; Grade 40 Concrete [3 m3] | 826_AB |  |  |  |  |  |  |
| 8260SWXP30080 |  | Lining reinforcement fixing and formwork (side walls and roof) |  | 8d | 2015-10-03 A | 2015-10-12 A | 8260SWXP30076 | 100% | 2015-11-05 | 2015-11-12 | Concrete Construction Labour [640 h]; Formwork [10 m2]; Reinforceing steel [10 t] | 826_AB |  |  |  |  |  |  |
| 8260SWXP30082 |  | Lining concreting (side walls and roof) |  | 1d | 2015-10-13 A | 2015-10-14 A | 8260SWXP30080 | 100% | 2015-11-05 | 2015-11-05 | Grade 40 Concrete [6 m3]; Concrete Construction Labour [80 h] | 826_AB |  |  |  |  |  |  |
| 8260SWXP30090 |  | Lining concrete curing (side walls and roof) |  | 2d | 2015-10-15 A | 2015-10-17 A | 8260SWXP30082 | 100% | 2015-11-05 | 2015-11-06 | Concrete Construction Labour [160 h] | 826_AB |  |  | 826 | E | 2610 | CP |
| 8260SWXP30097 |  | Concrete achieved the design strength |  | 7d | 2015-10-18 A | 2015-10-21 A | 8260SWXP30082, 8260SWXP30055 FF | 100% | 2015-11-05 | 2015-11-11 |  | 826_AB |  |  |  |  |  |  |
| 8260SWXP30100 |  | Remove temp. works, ring support and temp. platform |  | 19d | 2015-10-22 A | 2015-12-07 A | 8260SWXP30098, 8260SWXP30097 | 100% | 2016-04-01 | 2016-04-19 | General Civil Engineering Labour [1520 h] | 826_AB |  | D | 826 | E | 2610 | CP |
| 8260SWXP30093 |  | Make Good Freezing Pipe Hole |  | 3d | 2015-10-24 A | 2015-10-26 A | 8260SWXP30090 | 100% | 2015-11-05 | 2015-11-07 | Drilling and Grouting Labour [240 h] | 826_AB |  |  |  |  |  |  |
| 8260SWXP30098 |  | Remove formwork |  | 4d | 2015-11-28 A | 2015-12-04 A | 8260SWXP30093 | 100% | 2016-04-01 | 2016-04-04 | General Civil Engineering Labour [320 h] | 826_AB |  |  |  |  |  |  |
| 8260SWXP30130 |  | Construct Thawing & Proof Grouting |  | 30d | 2015-12-08 A | 2016-01-07 A | 8260SWXP30097 | 100% | 2016-04-01 | 2016-04-30 | Drilling and Grouting Labour [400 h] | 826_AB |  | D | 826 | E | 2610 | CP |

| ID | WBS | Activity | Type | Duration | Start | Finish | Predecessors | Complete | Planned start | Planned finish | Resources | user_text1 | REVISION | CONTRACTS | COST CENTRE | LOCATION OF WORK | SUB-LOCATION OF | 826_As-built |
| --- | --- | --- | --- | --- | --- | --- | --- | --- | --- | --- | --- | --- | --- | --- | --- | --- | --- | --- |
|  | 4 | **Cross Passage #4. Ch. 116+671** |  |  | 2015-06-20 | 2016-01-01 |  |  |  |  |  |  |  |  |  |  |  |  |
| 8260SWXP40030 |  | Erect Temporary Drilling Platform |  | 5d | 2015-06-20 A | 2015-06-25 A | 8260SWTDn0155 SS | 100% | 2015-07-19 | 2015-07-23 | Temporary Works Steelworker [240 h]; Temporary Works Steel [3.75 t] | 0428 | D | 826 | E | 2610 | CP | 826_AB |
| 8260SWXP40040 |  | Drill & Install Freezing Pipe |  | 46d | 2015-07-02 A | 2015-08-01 A | 8260SWXP40030 | 100% | 2015-07-06 | 2015-08-20 | Drilling and Grouting Labour [3600 h] |  | D | 826 | E | 2610 | CP | 826_AB |
| 8260SWXP40048 |  | Install freezing & monitoring system |  | 3d | 2015-08-02 A | 2015-08-05 A | 8260SWXP40042 SS+5d | 100% | 2015-09-29 | 2015-10-01 | Freeze Plant Support Labour [1200 h]; MEP Installation Labour [240 h] |  |  |  |  |  |  | 826_AB |
| 8260SWXP40042 |  | Install temporary support (including ring support) |  | 15d | 2015-08-05 A | 2015-08-19 A | 8260SWXP40040 | 100% | 2015-09-29 | 2015-10-13 | Structural Steel [150 t]; Temporary Works Steelworker [1200 h]; Temporary Works Steel [18.75 t] |  |  |  |  |  |  | 826_AB |
| 8260SWXP40050 |  | Conduct Ground Freezing |  | 56d | 2015-08-06 A | 2015-09-27 A | 8260SWXPB120, 8260SWXP40048, 8260SWXP40040 | 100% | 2015-09-29 | 2015-11-23 | Ground Freezing Labour, at the face [6750 h]; Freeze Plant Support Labour [3600 h] |  | D | 826 | E | 2610 | CP | 826_AB |
| 8260SWXP40055 |  | Maintain ground freezing during construction of CP | level of effort | 107d | 2015-08-06 A | 2015-11-19 A | 8260SWXP40050 SS | 100% | 2015-11-05 | 2016-02-19 | Ground Freezing Labour, at the face [9000 h]; Freeze Plant Support Labour [4400 h] |  |  |  |  |  |  | 826_AB |
| 8260SWXP40045 |  | Install safe door |  | 4d | 2015-08-20 A | 2015-08-26 A | 8260SWXP40042 SS+5d | 100% | 2015-09-29 | 2015-10-02 | Temporary Works Steelworker [400 h]; Temporary Works Steel [6.25 t] |  |  |  |  |  |  | 826_AB |
| 8260SWXP40057 |  | Tunnel segment cutting & removal at U/T |  | 3d | 2015-09-29 A | 2015-09-30 A | 8260SWXP40050 | 100% | 2015-11-05 | 2015-11-07 | General Civil Engineering Labour [560 h] |  |  |  |  |  |  | 826_AB |
| 8260SWXP40060 |  | Excavate and temporary support |  | 17d | 2015-10-01 A | 2015-10-12 A | 8260SWXP40230, 8260SWXP40057, 8260SWXP40050 | 100% | 2015-11-09 | 2015-11-25 | Excavation and backfilling labour [5040 h]; Excavated Materials [155 m3]; Temporary Works Steel [41.25 t] |  |  | 826 | E | 2610 | CP | 826_AB |
| 8260SWXP40068 |  | Earthing, Waterproof works and waterproof test |  | 12d | 2015-10-13 A | 2015-10-20 A | 8260SWXP40060 | 100% | 2015-11-05 | 2015-11-16 | General Civil Engineering Labour [240 h] |  |  |  |  |  |  | 826_AB |
| 8260SWXP40073 |  | Lining reinforcement fixing and formwork (floor) |  | 9d | 2015-10-21 A | 2015-10-30 A | 8260SWXP40068 | 100% | 2015-11-05 | 2015-11-13 | Concrete Construction Labour [720 h]; Reinforceing steel [11.25 t]; Formwork [11.25 m2] |  |  |  |  |  |  | 826_AB |
| 8260SWXP40076 |  | Lining concreting (floor) |  | 1d | 2015-11-02 A | 2015-11-02 A | 8260SWXP40073 | 100% | 2015-11-05 | 2015-11-05 | Concrete Construction Labour [80 h]; Grade 40 Concrete [3 m3] |  |  |  |  |  |  | 826_AB |
| 8260SWXP40078 |  | Lining concrete curing (floor) |  | 1d | 2015-11-03 A | 2015-11-05 A | 8260SWXP40076 | 100% | 2015-11-05 | 2015-11-05 | Concrete Construction Labour [80 h] |  |  |  |  |  |  | 826_AB |
| 8260SWXP40080 |  | Lining reinforcement fixing and formwork (side walls and roof) |  | 5d | 2015-11-03 A | 2015-11-07 A | 8260SWXP40078 | 100% | 2015-11-05 | 2015-11-09 | Concrete Construction Labour [400 h]; Formwork [6.25 m2]; Reinforceing steel [6.25 t] |  |  |  |  |  |  | 826_AB |
| 8260SWXP40082 |  | Lining concreting (side walls and roof) |  | 2d | 2015-11-07 A | 2015-11-07 A | 8260SWXP40080 | 100% | 2015-11-10 | 2015-11-11 | Concrete Construction Labour [160 h]; Grade 40 Concrete [2.5 m3] |  |  |  |  |  |  | 826_AB |
| 8260SWXP40090 |  | Lining concrete curing (side walls and roof) |  | 3d | 2015-11-09 A | 2015-11-10 A | 8260SWXP40082 | 100% | 2016-04-01 | 2016-04-03 | Concrete Construction Labour [240 h] |  |  | 826 | E | 2610 | CP | 826_AB |
| 8260SWXP40095 |  | Remove formwork |  | 4d | 2015-11-11 A | 2015-11-14 A | 8260SWXP40097, 8260SWXP40132 | 100% | 2016-04-08 | 2016-04-11 | General Civil Engineering Labour [320 h] |  |  |  |  |  |  | 826_AB |
| 8260SWXP40097 |  | Concrete achieved the design strength |  | 7d | 2015-11-15 A | 2015-11-19 A | 8260SWXP40090, 8260SWXP40055 FF | 100% | 2016-04-01 | 2016-04-07 |  |  |  |  |  |  |  | 826_AB |
| 8260SWXP40098 |  | Remove temp. works and ring support |  | 10d | 2015-11-20 A | 2015-11-24 A | 8260SWXP40097, 8260SWXP40095 | 100% | 2016-04-01 | 2016-04-10 | General Civil Engineering Labour [800 h] |  |  |  |  |  |  | 826_AB |
| 8260SWXP40100 |  | Remove working platform |  | 5d | 2015-11-25 A | 2015-11-30 A | 8260SWXP40098, 8260SWXP40132 FF+2d | 100% | 2016-04-01 | 2016-04-05 | General Civil Engineering Labour [400 h] |  | D | 826 | E | 2610 | CP | 826_AB |
| 8260SWXP40130 |  | Construct Thawing & Proof Grouting |  | 30d | 2015-12-01 A | 2015-12-31 A | 8260SWXP40097 | 100% | 2016-04-01 | 2016-04-30 | Drilling and Grouting Labour [400 h] |  | D | 826 | E | 2610 | CP | 826_AB |
| 8260SWXP40132 |  | Make Good Freezing Pipe Hole |  | 3d | 2016-01-01 A | 2016-01-01 A | 8260SWXP40090 | 100% | 2016-04-01 | 2016-04-03 | Drilling and Grouting Labour [240 h] |  |  |  |  |  |  | 826_AB |
|  | 2 | **Works at Down-Track** |  |  | 2015-07-13 | 2015-10-05 |  |  |  |  |  |  |  |  |  |  |  |  |
| 8260SWXP40200 |  | Erect temp. working platform |  | 5d | 2015-07-13 A | 2015-07-23 A | 8260SWTUp0157 | 100% | 2015-09-29 | 2015-10-03 | Temporary Works Steelworker [384 h]; Temporary Works Steel [6 t] |  |  |  |  |  |  | 826_AB |
| 8260SWXP40210 |  | Drilling remaining holes at D/T |  | 5d | 2015-07-24 A | 2015-07-28 A | 8260SWXP40200 | 100% | 2015-09-29 | 2015-10-03 | Drilling and Grouting Labour [384 h] |  |  |  |  |  |  | 826_AB |
| 8260SWXP40220 |  | Install ring support at D/T |  | 5d | 2015-07-29 A | 2015-08-03 A | 8260SWXP40210 | 100% | 2015-09-29 | 2015-10-03 | Temporary Works Steel [6 t]; Temporary Works Steelworker [384 h] |  |  |  |  |  |  | 826_AB |
| 8260SWXP40230 |  | Tunnel segment removal at D/T |  | 3d | 2015-10-03 A | 2015-10-05 A | 8260SWXP40220, 8260SWXP40045 | 100% | 2015-11-05 | 2015-11-07 | General Civil Engineering Labour [160 h] |  |  |  |  |  |  | 826_AB |

| ID | WBS | Activity | Type | Duration | Start | Finish | Predecessors | Complete | Planned start | Planned finish | Resources | 826_As-built | user_text1 | REVISION | CONTRACTS | COST CENTRE | LOCATION OF WORK | SUB-LOCATION OF |
| --- | --- | --- | --- | --- | --- | --- | --- | --- | --- | --- | --- | --- | --- | --- | --- | --- | --- | --- |
|  | 5 | **Cross Passage #5. Ch. 116+966** |  |  | 2015-06-27 | 2016-03-07 |  |  |  |  |  |  |  |  |  |  |  |  |
| 8260SWXP50020 |  | S624 TBM C/W passed (Ch. 117+066); last gantry passed CP5 | milestone | 0d | 2015-06-27 A | 2015-06-27 A | 8260SWTUp0160 SS+5d | 100% | 2015-07-01 | 2015-07-01 |  | 826_AB |  |  |  |  |  |  |
| 8260SWXP50030 |  | Erect Temporary Drilling Platform at U/T |  | 5d | 2015-07-25 A | 2015-08-01 A | 8260SWXP50020 | 100% | 2015-09-29 | 2015-10-03 | Temporary Works Steelworker [240 h]; Temporary Works Steel [3.75 t] | 826_AB | 0428 | D | 826 | E | 2610 | CP |
| 8260SWXP50032 |  | TBM S623 C/W exited Alluvial zone at S1425/Ch. 116+927 (* Note1) | milestone | 0d | 2015-09-01 A | 2015-09-01 A | 8260SWTDn0163 FS+4d | 100% | 2015-09-29 | 2015-09-29 |  | 826_AB |  |  |  |  |  |  |
| 8260SWXP50034 |  | TBM S623 C/W boring from Ch. 116+927 to Ch. 116+986 (CP5+20m) (* Note 2) |  | 11d | 2015-09-01 A | 2015-09-10 A | 8260SWXP50032 | 100% | 2015-09-29 | 2015-10-09 |  | 826_AB |  |  |  |  |  |  |
| 8260SWXP50036 |  | Drill & Install Freezing Pipe at U/T |  | 46d | 2015-09-16 A | 2015-10-06 A | 8260SWXP50034, 8260SWXP50030 | 100% | 2015-10-10 | 2015-11-24 | Drilling and Grouting Labour [3600 h] | 826_AB |  | D | 826 | E | 2610 | CP |
| 8260SWXP50037 |  | Raise track rail, slurry pipes diversion, install temp. support at U/T |  | 2d | 2015-10-07 A | 2015-10-08 A | 8260SWXP50036 | 100% | 2015-11-05 | 2015-11-06 |  | 826_AB |  |  |  |  |  |  |
| 8260SWXP50039 |  | Install Ring Support |  | 5d | 2015-10-07 A | 2015-10-08 A | 8260SWXP50037 | 100% | 2015-11-05 | 2015-11-09 | Structural Steel [50 t]; Temporary Works Steelworker [400 h]; Temporary Works Steel [6.25 t] | 826_AB |  |  |  |  |  |  |
| 8260SWXP50048 |  | Install freezing & monitoring system |  | 1d | 2015-10-09 A | 2015-10-09 A | 8260SWXP50039 | 100% | 2015-11-05 | 2015-11-05 | Freeze Plant Support Labour [1200 h]; MEP Installation Labour [80 h] | 826_AB |  |  |  |  |  |  |
| 8260SWXP50049 |  | Freezing system Test & Commissioning |  | 2d | 2015-10-10 A | 2015-10-12 A | 8260SWXP50048 | 100% | 2015-11-05 | 2015-11-06 | Freeze Plant Support Labour [160 h] | 826_AB |  |  |  |  |  |  |
| 8260SWXP50050 |  | Conduct Ground Freezing (Active phase) |  | 50d | 2015-10-13 A | 2015-11-30 A | 8260SWXP50049, 8260SWXPB120 | 100% | 2015-11-05 | 2015-12-24 | Ground Freezing Labour, at the face [6750 h]; Freeze Plant Support Labour [3600 h] | 826_AB |  | D | 826 | E | 2610 | CP |
| 8260SWXP50055 |  | Maintain ground freezing during construction of CP | level of effort | 111d | 2015-10-19 A | 2016-01-16 A | 8260SWXP50050 SS | 100% | 2015-12-01 | 2016-03-20 | Ground Freezing Labour, at the face [9000 h]; Freeze Plant Support Labour [4400 h] | 826_AB |  |  |  |  |  |  |
| 8260SWXP50056 |  | Install safe door (both sides) |  | 6d | 2015-11-21 A | 2015-11-23 A | 8260SWXP50050 FF, 8260SWXP50037 FS+42d | 100% | 2016-04-01 | 2016-04-06 | Temporary Works Steelworker [400 h]; Temporary Works Steel [6.25 t] | 826_AB |  |  |  |  |  |  |
| 8260SWXP50060 |  | Excavate and temporary support (excavation from D/T) |  | 21d | 2015-12-06 A | 2015-12-18 A | 8260SWXP50045, 8260SWXP50057, 8260SWXP50050 | 100% | 2016-04-01 | 2016-04-21 | Temporary Works Steelworker [5040 h]; Excavation and backfilling labour [5040 h]; Excavated Materials [155 m3]; Temporary Works Steel [41.25 t] | 826_AB |  |  | 826 | E | 2610 | CP |
| 8260SWXP50057 |  | Tunnel segment cutting & removal at D/T |  | 5d | 2015-12-19 A | 2015-12-20 A | 8260SWXP50050, 8260SWXP50056 | 100% | 2016-04-01 | 2016-04-05 | General Civil Engineering Labour [160 h] | 826_AB |  |  |  |  |  |  |
| 8260SWXP50068 |  | Earthing, Waterproof works and waterproof test |  | 7d | 2015-12-20 A | 2015-12-21 A | 8260SWXP50060 | 100% | 2016-04-01 | 2016-04-07 | General Civil Engineering Labour [240 h] | 826_AB |  |  |  |  |  |  |
| 8260SWXP50073 |  | Lining reinforcement fixing and formwork (floor) |  | 7d | 2015-12-22 A | 2016-01-05 A | 8260SWXP50068 | 100% | 2016-04-01 | 2016-04-07 | Concrete Construction Labour [560 h]; Formwork [8.75 m2]; Reinforceing steel [8.75 t] | 826_AB |  |  |  |  |  |  |
| 8260SWXP50076 |  | Lining concreting (floor) |  | 2d | 2016-01-06 A | 2016-01-06 A | 8260SWXP50073 | 100% | 2016-04-01 | 2016-04-02 | Concrete Construction Labour [160 h]; Grade 40 Concrete [2.5 m3] | 826_AB |  |  |  |  |  |  |
| 8260SWXP50078 |  | Lining concrete curing (floor) |  | 1d | 2016-01-07 A | 2016-01-07 A | 8260SWXP50076 | 100% | 2016-04-01 | 2016-04-01 | Concrete Construction Labour [80 h] | 826_AB |  |  |  |  |  |  |
| 8260SWXP50080 |  | Lining reinforcement fixing and formwork (side walls and roof) |  | 7d | 2016-01-08 A | 2016-01-10 A | 8260SWXP50078 | 100% | 2016-04-01 | 2016-04-07 | Concrete Construction Labour [560 h]; Formwork [8.75 m2]; Reinforceing steel [8.75 t] | 826_AB |  |  |  |  |  |  |
| 8260SWXP50082 |  | Lining concreting (side walls and roof) |  | 2d | 2016-01-12 A | 2016-01-13 A | 8260SWXP50080 | 100% | 2016-04-01 | 2016-04-02 | Grade 40 Concrete [6 m3]; Concrete Construction Labour [160 h] | 826_AB |  |  |  |  |  |  |
| 8260SWXP50090 |  | Lining concrete curing (side walls and roof) |  | 2d | 2016-01-13 A | 2016-01-15 A | 8260SWXP50082 | 100% | 2016-04-01 | 2016-04-02 | Concrete Construction Labour [160 h] | 826_AB |  |  | 826 | E | 2610 | CP |
| 8260SWXP50093 |  | Remove formwork |  | 3d | 2016-01-16 A | 2016-01-16 A | 8260SWXP50094 SS+4d | 100% | 2016-04-01 | 2016-04-03 | General Civil Engineering Labour [240 h] | 826_AB |  |  |  |  |  |  |
| 8260SWXP50094 |  | Concrete achieved the design strength |  | 7d | 2016-01-17 A | 2016-01-23 A | 8260SWXP50090, 8260SWXP50082, 8260SWXP50055 FF | 100% | 2016-04-01 | 2016-04-07 |  | 826_AB |  |  |  |  |  |  |
| 8260SWXP50096 |  | Remove Ring Support |  | 5d | 2016-01-24 A | 2016-01-25 A | 8260SWXP50093, 8260SWXP50094 | 100% | 2016-04-01 | 2016-04-05 | Temporary Works Steelworker [400 h] | 826_AB |  |  |  |  |  |  |
| 8260SWXP50097 |  | Remove working platform |  | 7d | 2016-01-26 A | 2016-01-27 A | 8260SWXP50096, 8260SWXP50140 FF+2d | 100% | 2016-04-01 | 2016-04-07 | General Civil Engineering Labour [560 h] | 826_AB |  |  |  |  |  |  |
| 8260SWXP50130 |  | Thawing & Proof Grouting |  | 30d | 2016-01-28 A | 2016-02-28 A | 8260SWXP50094 | 100% | 2016-04-01 | 2016-04-30 | Drilling and Grouting Labour [2400 h] | 826_AB |  | D | 826 | E | 2610 | CP |
| 8260SWXP50140 |  | Make Good Freezing Pipe Hole |  | 4d | 2016-02-29 A | 2016-03-07 A | 8260SWXP50096 FS-1d | 100% | 2016-04-01 | 2016-04-04 | Drilling and Grouting Labour [320 h] | 826_AB |  |  |  |  |  |  |

| ID | WBS | Activity | Type | Duration | Start | Finish | Predecessors | Complete | Planned start | Planned finish | Resources | 826_As-built | user_text1 | REVISION | CONTRACTS | COST CENTRE | LOCATION OF WORK | SUB-LOCATION OF |
| --- | --- | --- | --- | --- | --- | --- | --- | --- | --- | --- | --- | --- | --- | --- | --- | --- | --- | --- |
|  | 2 | **Works at Down-Track** |  |  | 2015-09-10 | 2015-10-11 |  |  |  |  |  |  |  |  |  |  |  |  |
| 8260SWXP50038 |  | TBM S623 C/W boring from Ch.. 116+986 to Ch117+086 (last gantry passed CP5+20m) (* Note 2) |  | 18d | 2015-09-10 A | 2015-09-23 A | 8260SWXP50034 | 100% | 2015-09-29 | 2015-10-16 |  | 826_AB |  |  |  |  |  |  |
| 8260SWXP50040 |  | Erect Temporary Drilling Platorm at D/T |  | 5d | 2015-09-24 A | 2015-09-30 A | 8260SWXP50038 | 100% | 2015-11-05 | 2015-11-09 | Temporary Works Steel [6.25 t]; Temporary Works Steelworker [400 h] | 826_AB |  |  |  |  |  |  |
| 8260SWXP50042 |  | Drilling remaining holes at D/T after S623 gantries passed |  | 23d | 2015-10-01 A | 2015-10-04 A | 8260SWXP50040 | 100% | 2015-11-05 | 2015-11-27 | Drilling and Grouting Labour [1840 h] | 826_AB |  |  |  |  |  |  |
| 8260SWXP50045 |  | Install ring support at D/T |  | 6d | 2015-10-05 A | 2015-10-11 A | 8260SWXP50042 | 100% | 2015-11-05 | 2015-11-10 | Temporary Works Steel [18.75 t]; Temporary Works Steelworker [480 h]; Structural Steel [60 t] | 826_AB |  |  |  |  |  |  |
|  | 6 | **Cross Passage #6. Ch. 117+216** |  |  | 2015-07-27 | 2016-03-31 |  |  |  |  |  |  |  |  |  |  |  |  |
| 8260SWXP60010 |  | S624 TBM C/W passed (Ch. 117+316); last gantry passed CP6 | milestone | 0d | 2015-07-27 A | 2015-07-27 A | 8260SWTUp0160 SS+64d | 100% | 2015-08-01 | 2015-08-01 |  | 826_AB |  |  |  |  |  |  |
| 8260SWXP60020 |  | Erect Drilling Platform at U/T |  | 7d | 2015-08-13 A | 2015-09-18 A | 8260SWXP60010 | 100% | 2015-11-05 | 2015-11-11 | Temporary Works Steelworker [240 h]; Temporary Works Steel [3.75 t] | 826_AB | 0428 | D | 826 | E | 2610 | CP |
| 8260SWXP60030 |  | Install Ring Support at U/T |  | 7d | 2015-08-20 A | 2015-08-24 A | 8260SWXP60032 SS+5d | 100% | 2016-04-01 | 2016-04-07 | Structural Steel [70 t]; Temporary Works Steel [8.75 t]; Temporary Works Steelworker [560 h] | 826_AB |  |  |  |  |  |  |
| 8260SWXP60023 |  | Drill ground freezing holes at U/T |  | 30d | 2015-10-16 A | 2015-10-31 A | 8260SWXP60020 FF | 100% | 2015-11-05 | 2015-12-04 | Drilling and Grouting Labour [2400 h] | 826_AB |  |  |  |  |  |  |
| 8260SWXP60032 |  | Install freezing & monitoring system at U/T |  | 6d | 2015-11-01 A | 2015-11-04 A | 8260SWXP60023 | 100% | 2015-11-05 | 2015-11-10 | Ground Freezing Labour, at the face [480 h]; Freeze Plant Support Labour [480 h]; MEP Installation Labour [480 h] | 826_AB |  |  |  |  |  |  |
| 8260SWXP60033 |  | Freezing system Test & Commissioning at U/T, Station B |  | 1d | 2015-11-03 A | 2015-11-06 A | 8260SWXP60032 | 100% | 2016-04-01 | 2016-04-01 | Freeze Plant Support Labour [80 h]; MEP Installation Labour [80 h] | 826_AB |  |  |  |  |  |  |
| 8260SWXP60040 |  | Conduct Ground Freezing |  | 49d | 2015-11-07 A | 2015-12-17 A | 8260SWXP60059 FF+35d, 8260SWXP60033 | 100% | 2016-04-01 | 2016-05-19 | Freeze Plant Support Labour [3920 h]; Ground Freezing Labour, at the face [3920 h] | 826_AB |  |  |  |  |  |  |
| 8260SWXP60076 |  | Excavate and temporary support (excavation from U/T side only) |  | 21d | 2015-12-15 A | 2016-01-03 A | 8260SWXP60075 | 100% | 2016-04-01 | 2016-04-21 | Excavation and backfilling labour [1680 h]; Excavated Materials [26.25 m3] | 826_AB |  |  |  |  |  |  |
| 8260SWXP60072 |  | Install safe door (both sides) |  | 6d | 2015-12-16 A | 2015-12-17 A | 8260SWXP60030, 8260SWXP60023, 8260SWXP60033 | 100% | 2016-04-10 | 2016-04-15 | Temporary Works Steelworker [480 h] | 826_AB |  |  |  |  |  |  |
| 8260SWXP60050 |  | Maintain Ground Freezing | level of effort | 76d | 2015-12-18 A | 2016-01-26 A | 8260SWXP60040 SS | 100% | 2016-04-01 | 2016-06-15 | Ground Freezing Labour, at the face [8800 h]; Freeze Plant Support Labour [8800 h] | 826_AB |  |  |  |  |  |  |
| 8260SWXP60075 |  | Tunnel segment removal |  | 5d | 2015-12-19 A | 2015-12-21 A | 8260SWXP60040, 8260SWXP60072, 8260SWXP60060 | 100% | 2016-04-16 | 2016-04-20 | General Civil Engineering Labour [400 h] | 826_AB |  |  |  |  |  |  |
| 8260SWXP60078 |  | Earthing, Waterproof works and waterproof test |  | 7d | 2016-01-04 A | 2016-01-13 A | 8260SWXP60076 | 100% | 2016-04-01 | 2016-04-07 | General Civil Engineering Labour [560 h] | 826_AB |  |  |  |  |  |  |
| 8260SWXP60080 |  | Lining reinforcement fixing and formwork (floor) |  | 7d | 2016-01-10 A | 2016-01-11 A | 8260SWXP60078 | 100% | 2016-04-01 | 2016-04-07 | Concrete Construction Labour [560 h]; Formwork [8.75 m2]; Reinforceing steel [8.75 t] | 826_AB |  |  |  |  |  |  |
| 8260SWXP60090 |  | Lining concreting (floor) |  | 2d | 2016-01-15 A | 2016-01-31 A | 8260SWXP60080 | 100% | 2016-04-01 | 2016-04-02 | Concrete Construction Labour [160 h]; Grade 40 Concrete [2.5 m3] | 826_AB |  |  |  |  |  |  |
| 8260SWXP60092 |  | Lining concrete curing (floor) |  | 1d | 2016-01-16 A | 2016-01-31 A | 8260SWXP60090 | 100% | 2016-04-01 | 2016-04-01 | Concrete Construction Labour [80 h] | 826_AB |  |  |  |  |  |  |
| 8260SWXP60094 |  | Lining reinforcement fixing and formwork (side walls and roof) |  | 7d | 2016-01-17 A | 2016-01-21 A | 8260SWXP60092 | 100% | 2016-04-01 | 2016-04-07 | Concrete Construction Labour [560 h]; Formwork [8.75 m2]; Reinforceing steel [8.75 t] | 826_AB |  |  |  |  |  |  |
| 8260SWXP60096 |  | Lining concreting (side walls and roof) |  | 2d | 2016-01-22 A | 2016-01-23 A | 8260SWXP60094 | 100% | 2016-04-01 | 2016-04-02 | Concrete Construction Labour [160 h]; Grade 40 Concrete [2.5 m3] | 826_AB |  |  |  |  |  |  |
| 8260SWXP60098 |  | Lining concrete curing (side walls and roof) |  | 2d | 2016-01-24 A | 2016-01-26 A | 8260SWXP60096 | 100% | 2016-04-01 | 2016-04-02 | Concrete Construction Labour [160 h] | 826_AB |  |  | 826 | E | 2610 | CP |
| 8260SWXP60136 |  | Remove formwork & Remove safe doors |  | 1d | 2016-01-27 A | 2016-01-31 A | 8260SWXP60110 SS+4d | 100% | 2016-04-01 | 2016-04-01 | General Civil Engineering Labour [1200 h] | 826_AB |  |  | 826 | E | 2610 | CP |
| 8260SWXP60110 |  | Concrete achieved the design strength |  | 7d | 2016-02-01 A | 2016-02-07 A | 8260SWXP60098, 8260SWXP60050 FF | 100% | 2016-04-01 | 2016-04-07 |  | 826_AB |  |  |  |  |  |  |
| 8260SWXP60137 |  | Remove Ring Support |  | 5d | 2016-02-08 A | 2016-02-12 A | 8260SWXP60136, 8260SWXP60110 | 100% | 2016-04-01 | 2016-04-05 | General Civil Engineering Labour [1200 h]; Temporary Works Steelworker [400 h] | 826_AB |  |  | 826 | E | 2610 | CP |
| 8260SWXP60139 |  | Remove working platform |  | 7d | 2016-02-13 A | 2016-02-27 A | 8260SWXP60150, 8260SWXP60137 FS-4d | 100% | 2016-04-01 | 2016-04-07 | General Civil Engineering Labour [1200 h]; Temporary Works Steelworker [560 h] | 826_AB |  |  | 826 | E | 2610 | CP |
| 8260SWXP60140 |  | Thawing & Proof Grouting |  | 30d | 2016-02-20 A | 2016-03-26 A | 8260SWXP60110 | 100% | 2016-04-01 | 2016-04-30 | Drilling and Grouting Labour [400 h] | 826_AB |  | D | 826 | E | 2610 | CP |
| 8260SWXP60150 |  | Make Good Freezing Pipe Hole |  | 4d | 2016-03-27 A | 2016-03-31 A | 8260SWXP60137 FF+2d | 100% | 2016-04-11 | 2016-04-14 | Drilling and Grouting Labour [320 h] | 826_AB |  |  |  |  |  |  |

| ID | WBS | Activity | Type | Duration | Start | Finish | Predecessors | Complete | Planned start | Planned finish | Constraint | Resources | 826_As-built |
| --- | --- | --- | --- | --- | --- | --- | --- | --- | --- | --- | --- | --- | --- |
|  | 2 | **Works at Down-Track** |  |  | 2015-10-22 | 2015-12-14 |  |  |  |  |  |  |  |
| 8260SWXP60055 |  | S623 TBM C/W passed (Ch. 117+316); last gantry passed CP6 | milestone | 0d | 2015-10-22 A | 2015-10-22 A | 8260SWXP50032 SS | 100% | 2015-09-29 | 2015-09-29 |  |  | 826_AB |
| 8260SWXP60057 |  | Erect Working Platform at D/T |  | 4d | 2015-11-01 A | 2015-11-06 A | 8260SWXP60055 | 100% | 2015-11-05 | 2015-11-08 |  | Temporary Works Steel [10 t]; Temporary Works Steelworker [640 h] | 826_AB |
| 8260SWXP60058 |  | Drill ground freezing holes at D/T |  | 3d | 2015-11-07 A | 2015-11-12 A | 8260SWXP60057 | 100% | 2016-04-01 | 2016-04-03 |  | Drilling and Grouting Labour [320 h] | 826_AB |
| 8260SWXP60059 |  | Install freezing & monitoring system at D/T |  | 5d | 2015-11-13 A | 2015-12-03 A | 8260SWXP60058 | 100% | 2016-04-01 | 2016-04-05 |  | Freeze Plant Support Labour [480 h] | 826_AB |
| 8260SWXP60060 |  | Ring support installation at D/T |  | 6d | 2015-12-04 A | 2015-12-14 A | 8260SWXP60059 | 100% | 2016-04-06 | 2016-04-11 |  | Temporary Works Steelworker [480 h]; Temporary Works Steel [7.5 t] | 826_AB |
|  | 50 | **Tunnel Finishes to Deg. 1** |  |  | 2015-05-08 | 2016-12-24 |  |  |  |  |  |  |  |
|  | 1 | **Down Track Tunnel Finishes** |  |  | 2015-05-08 | 2016-12-24 |  |  |  |  |  |  |  |
|  | 1 | **Tunnel Invert Slab (DT)** |  |  | 2015-05-08 | 2016-04-28 |  |  |  |  |  |  |  |
| 8260TISDn0010 |  | Invert Slab between HK Boundary and CP1 (104-15=89m-64=25m) |  | 6d | 2015-05-08 A | 2015-12-16 A | 8260TISDn0020 FF, 8260TISDn0030 FF | 100% | 2015-11-05 | 2015-11-10 |  | Formwork [7.5 m2]; Concrete Construction Labour [480 h]; Grade 30 Concrete [7.5 m3] | 826_AB |
| 8260TISDn0100 |  | Invert Slab at CP6 (20m) |  | 2d | 2015-11-19 A | 2015-11-19 A | 8260SWXP60139 | 100% | 2016-04-01 | 2016-04-02 |  | Concrete Construction Labour [160 h]; Formwork [2.5 m2]; Grade 30 Concrete [2.5 m3] | 826_AB |
| 8260TISDn0110 |  | Invert Slab between CP6 and 2B Gates(next to CP6) (14m) |  | 2d | 2015-11-19 A | 2015-11-19 A | 8260TISDn0010, 8260SWFDn0040 | 100% | 2016-04-07 | 2016-04-08 |  | Formwork [2.5 m2]; Concrete Construction Labour [160 h]; Grade 30 Concrete [2.5 m3] | 826_AB |
| 8260TISDn0090 |  | Invert Slab between CP5 and CP6 (250-39=211m) |  | 13d | 2015-11-19 A | 2015-11-23 A | 8260SWTDn0192 | 100% | 2016-04-01 | 2016-04-13 | start on or after 2015-11-11 | Formwork [16.25 m2]; Concrete Construction Labour [1040 h]; Grade 30 Concrete [16.25 m3] | 826_AB |
| 8260TISDn0080 |  | Invert Slab at CP5 (58m) |  | 3d | 2015-11-26 A | 2015-11-26 A | 8260SWXP50097 | 100% | 2016-04-01 | 2016-04-03 |  | Concrete Construction Labour [240 h]; Formwork [3.75 m2]; Grade 30 Concrete [3.75 m3] | 826_AB |
| 8260TISDn0070 |  | Invert Slab between CP4 and CP5 (296-59=237m) |  | 15d | 2015-11-26 A | 2016-02-28 A | 8260TISDn0090 | 100% | 2016-04-14 | 2016-04-28 |  | Formwork [18.75 m2]; Concrete Construction Labour [1200 h]; Grade 30 Concrete [18.75 m3] | 826_AB |
| 8260TISDn0055 |  | Invert Slab between CP3 and CP4 (226-45=181m) |  | 9d | 2015-12-03 A | 2016-01-05 A | 8260TISDn0070 | 100% | 2016-04-29 | 2016-05-07 |  | Formwork [11.25 m2]; Concrete Construction Labour [720 h]; Grade 30 Concrete [11.25 m3] | 826_AB |
| 8260TISDn0030 |  | Invert Slab between CP1 and CP2 (164-30=134m) |  | 8d | 2015-12-09 A | 2015-12-26 A | 8260TISDn0040 | 100% | 2016-05-21 | 2016-05-28 |  | Grade 30 Concrete [10 m3]; Formwork [10 m2]; Concrete Construction Labour [640 h] | 826_AB |
| 8260TISDn0020 |  | Invert Slab at CP1 (30m) |  | 2d | 2015-12-16 A | 2015-12-16 A | 8260SWXP10098, 8260TISDn0030 | 100% | 2016-05-29 | 2016-05-30 |  | Concrete Construction Labour [160 h]; Formwork [2.5 m2]; Grade 30 Concrete [2.5 m3] | 826_AB |
| 8260TISDn0040 |  | Invert Slab between CP2 and CP3 (250-30=220m) |  | 13d | 2015-12-19 A | 2016-01-04 A | 8260TISDn0055 | 100% | 2016-05-08 | 2016-05-20 |  | Formwork [16.25 m2]; Concrete Construction Labour [1040 h]; Grade 30 Concrete [16.25 m3] | 826_AB |
| 8260TISDn0035 |  | Invert Slab at CP2 (30m) |  | 2d | 2015-12-26 A | 2015-12-26 A | 8260TISDn0040, 8260TISDn0010, 8260SWXP20098, 8260TISDn0020 | 100% | 2016-05-21 | 2016-05-22 |  | Concrete Construction Labour [160 h]; Formwork [2.5 m2]; Grade 30 Concrete [2.5 m3] | 826_AB |
| 8260TISDn0050 |  | Invert Slab at CP3 (30m) |  | 2d | 2016-01-04 A | 2016-01-04 A | 8260TISDn0010, 8260SWXP30100, 8260TISDn0035 | 100% | 2016-04-01 | 2016-04-02 |  | Concrete Construction Labour [160 h]; Formwork [2.5 m2]; Grade 30 Concrete [2.5 m3] | 826_AB |
| 8260TISDn0060 |  | Invert Slab at CP4 (60m) |  | 3d | 2016-01-08 A | 2016-01-09 A | 8260TISDn0050, 8260SWXP40100 | 100% | 2016-04-01 | 2016-04-03 |  | Concrete Construction Labour [240 h]; Formwork [3.75 m2]; Grade 30 Concrete [3.75 m3] | 826_AB |
| 8260TISDn0120 |  | Invert Slab between 2B Gates(next to MPS) to CP6 (190-10-14-20=146m) |  | 10d | 2016-01-23 A | 2016-03-06 A | 8260SWFDn0040, 8260TISDn0110 SS | 100% | 2016-04-07 | 2016-04-16 |  | Concrete Construction Labour [800 h]; Formwork [12.5 m2]; Grade 30 Concrete [12.5 m3] | 826_AB |
| 8260TISDn0130 |  | Invert Slab between 2B Gates(next to MPS) to MPS (12m) |  | 2d | 2016-04-27 A | 2016-04-28 A | 8260SWFDn0050 | 100% | 2016-05-01 | 2016-05-02 |  | Formwork [2.5 m2]; Concrete Construction Labour [160 h]; Grade 30 Concrete [2.5 m3] | 826_AB |

Notes:
- 8260TISDn0010: Notes: remaining = / 104-15=89m-64=25m

| ID | WBS | Activity | Duration | Start | Finish | Predecessors | Complete | Planned start | Planned finish | Constraint | Resources | 826_As-built |
| --- | --- | --- | --- | --- | --- | --- | --- | --- | --- | --- | --- | --- |
|  | 2 | **Lower Walkway (DT)** |  | 2016-01-10 | 2016-04-28 |  |  |  |  |  |  |  |
| 8260TLWDn0100 |  | Lower Wkys between CP5 and CP6 (250-39=211m) | 13d | 2016-01-10 A | 2016-03-11 A | 8260SWXP50090, 8260SWXP60098, 8260TISDn0090 | 100% | 2016-04-01 | 2016-04-13 |  | Concrete Construction Labour [1040 h]; Formwork [16.25 m2]; Grade 30 Concrete [16.25 m3] | 826_AB |
| 8260TLWDn0120 |  | Lower Wkys between CP6 and 2B Gates(next to CP6) (14m) | 2d | 2016-01-11 A | 2016-01-11 A | 8260TISDn0110, 8260TLWDn0010 | 100% | 2016-04-01 | 2016-04-02 |  | Concrete Construction Labour [160 h]; Formwork [2.5 m2]; Grade 30 Concrete [2.5 m3] | 826_AB |
| 8260TLWDn0110 |  | Lower Wkys at CP6 (20m) | 2d | 2016-01-11 A | 2016-03-10 A | 8260TISDn0100 | 100% | 2016-04-01 | 2016-04-02 |  | Formwork [2.5 m2]; Concrete Construction Labour [160 h]; Grade 30 Concrete [2.5 m3] | 826_AB |
| 8260TLWDn0080 |  | Lower Wkys between CP4 and CP5 (296-59=237m) | 15d | 2016-01-17 A | 2016-03-04 A | 8260TISDn0070 | 100% | 2016-04-01 | 2016-04-15 | start on or after 2016-01-04 | Concrete Construction Labour [1200 h]; Formwork [18.75 m2]; Grade 30 Concrete [18.75 m3] | 826_AB |
| 8260TLWDn0010 |  | Lower Wkys between HK Boundary and CP1 (104-15=89m-64=25m) | 6d | 2016-01-21 A | 2016-02-04 A | 8260TISDn0010, 8260TLWDn0030 | 100% | 2016-05-16 | 2016-05-21 |  | Concrete Construction Labour [480 h]; Formwork [7.5 m2]; Grade 30 Concrete [7.5 m3] | 826_AB |
| 8260TLWDn0020 |  | Lower Wkys at CP1 (30m) | 2d | 2016-01-21 A | 2016-01-24 A | 8260TISDn0020, 8260TLWDn0010 | 100% | 2016-04-01 | 2016-04-02 |  | Formwork [2.5 m2]; Concrete Construction Labour [160 h]; Grade 30 Concrete [2.5 m3] | 826_AB |
| 8260TLWDn0060 |  | Lower Wkys between CP3 and CP4 (226-45=181m) | 9d | 2016-01-27 A | 2016-03-01 A | 8260TISDn0055, 8260TLWDn0080 | 100% | 2016-04-16 | 2016-04-24 |  | Concrete Construction Labour [720 h]; Formwork [11.25 m2]; Grade 30 Concrete [11.25 m3] | 826_AB |
| 8260TLWDn0070 |  | Lower Wkys at CP4 (60m) | 3d | 2016-01-29 A | 2016-01-29 A | 8260TLWDn0055, 8260TISDn0060 | 100% | 2016-04-01 | 2016-04-03 |  | Formwork [3.75 m2]; Concrete Construction Labour [240 h]; Grade 30 Concrete [3.75 m3] | 826_AB |
| 8260TLWDn0030 |  | Lower Wkys between CP1 and CP2 (164-30=134m) | 8d | 2016-01-30 A | 2016-02-24 A | 8260TLWDn0050 | 100% | 2016-05-08 | 2016-05-15 |  | Concrete Construction Labour [640 h]; Formwork [10 m2]; Grade 30 Concrete [10 m3] | 826_AB |
| 8260TLWDn0040 |  | Lower Wks at CP2 (30m) | 2d | 2016-02-01 A | 2016-02-26 A | 8260TLWDn0020, 8260TISDn0035 | 100% | 2016-04-01 | 2016-04-02 |  | Formwork [2.5 m2]; Concrete Construction Labour [160 h]; Grade 30 Concrete [2.5 m3] | 826_AB |
| 8260TLWDn0130 |  | Lower Wkys between 2B Gates(next to MPS) to CP6 (190-10-14-20=146m) | 10d | 2016-02-02 A | 2016-03-10 A | 8260TISDn0120, 8260TLWDn0120 SS | 100% | 2016-04-01 | 2016-04-10 |  | Formwork [12.5 m2]; Concrete Construction Labour [800 h]; Grade 30 Concrete [12.5 m3] | 826_AB |
| 8260TLWDn0050 |  | Lower Wkys between CP2 and CP3 (250-30=220m) | 13d | 2016-02-05 A | 2016-03-01 A | 8260TISDn0040, 8260TLWDn0060 | 100% | 2016-04-25 | 2016-05-07 |  | Concrete Construction Labour [1040 h]; Formwork [16.25 m2]; Grade 30 Concrete [16.25 m3] | 826_AB |
| 8260TLWDn0055 |  | Lower Wkys at CP3 (30m) | 2d | 2016-03-01 A | 2016-03-01 A | 8260TISDn0050, 8260TLWDn0040 | 100% | 2016-04-01 | 2016-04-02 |  | Formwork [2.5 m2]; Concrete Construction Labour [160 h]; Grade 30 Concrete [2.5 m3] | 826_AB |
| 8260TLWDn0090 |  | Lower Wkys at CP5 (58m) | 3d | 2016-03-11 A | 2016-03-11 A | 8260TISDn0080 | 100% | 2016-04-01 | 2016-04-03 |  | Formwork [3.75 m2]; Concrete Construction Labour [240 h]; Grade 30 Concrete [3.75 m3] | 826_AB |
| 8260TLWDn0140 |  | Lower Wkys between 2B Gates(next to MPS) to MPS (12m) | 2d | 2016-04-27 A | 2016-04-28 A | 8260TISDn0130 | 100% | 2016-05-01 | 2016-05-02 |  | Concrete Construction Labour [160 h]; Formwork [2.5 m2]; Grade 30 Concrete [2.5 m3] | 826_AB |
|  | 3 | **Upper Walkway (DT)** |  | 2016-02-12 | 2016-04-30 |  |  |  |  |  |  |  |
| 8260TUWDn0110 |  | Upper Wky at CP6 (20m) | 2d | 2016-02-12 A | 2016-02-15 A | 8260TLWDn0110 | 100% | 2016-04-01 | 2016-04-02 |  | Grade 30 Concrete [2.5 m3]; Concrete Construction Labour [160 h]; Formwork [2.5 m2] | 826_AB |
| 8260TUWDn0100 |  | Upper Wky between CP5 and CP6 (250-39=211m) | 13d | 2016-02-13 A | 2016-03-13 A | 8260TLWDn0100 SS+7d | 100% | 2016-04-01 | 2016-04-13 |  | Concrete Construction Labour [1040 h]; Grade 30 Concrete [16.25 m3]; Formwork [16.25 m2] | 826_AB |
| 8260TUWDn0120 |  | Upper Wky between CP6 and 2B Gates(next to CP6) (14m) | 2d | 2016-02-15 A | 2016-02-15 A | 8260TUWDn0010, 8260TLWDn0120 | 100% | 2016-04-01 | 2016-04-02 |  | Grade 30 Concrete [2.5 m3]; Formwork [2.5 m2]; Concrete Construction Labour [160 h] | 826_AB |
| 8260TUWDn0130 |  | Upper Wky between 2B Gates(next to MPS) to CP6 (190-10-14-20=146m) | 10d | 2016-02-16 A | 2016-03-12 A | 8260TLWDn0130 SS+7d, 8260TUWDn0120 SS | 100% | 2016-04-01 | 2016-04-10 |  | Grade 30 Concrete [12.5 m3]; Concrete Construction Labour [800 h]; Formwork [12.5 m2] | 826_AB |
| 8260TUWDn0070 |  | Upper Wky at CP4 (60m) | 3d | 2016-02-19 A | 2016-02-19 A | 8260TLWDn0070, 8260TUWDn0055 | 100% | 2016-04-01 | 2016-04-03 |  | Formwork [3.75 m2]; Concrete Construction Labour [240 h]; Grade 30 Concrete [3.75 m3] | 826_AB |
| 8260TUWDn0080 |  | Upper Wky between CP4 and CP5 (296-59=237m) | 15d | 2016-02-21 A | 2016-03-10 A | 8260TLWDn0080 SS+7d | 100% | 2016-04-01 | 2016-04-15 |  | Concrete Construction Labour [1200 h]; Formwork [18.75 m2]; Grade 30 Concrete [18.75 m3] | 826_AB |
| 8260TUWDn0030 |  | Upper Wky between CP1 and CP2 (164-30=134m) | 8d | 2016-02-25 A | 2016-03-03 A | 8260TLWDn0030 SS+7d, 8260TUWDn0050 | 100% | 2016-05-08 | 2016-05-15 |  | Formwork [10 m2]; Concrete Construction Labour [640 h]; Grade 30 Concrete [10 m3] | 826_AB |
| 8260TUWDn0040 |  | Upper Wky at CP2 (30m) | 2d | 2016-02-26 A | 2016-03-04 A | 8260TLWDn0040, 8260TUWDn0020 | 100% | 2016-04-01 | 2016-04-02 |  | Concrete Construction Labour [160 h]; Formwork [2.5 m2]; Grade 30 Concrete [2.5 m3] | 826_AB |
| 8260TUWDn0050 |  | Upper Wky between CP2 and CP3 (250-30=220m) | 13d | 2016-02-28 A | 2016-03-04 A | 8260TLWDn0050 SS+7d, 8260TUWDn0060 | 100% | 2016-04-25 | 2016-05-07 |  | Concrete Construction Labour [1040 h]; Formwork [16.25 m2]; Grade 30 Concrete [16.25 m3] | 826_AB |
| 8260TUWDn0060 |  | Upper Wky between CP3 and CP4 (226-45=181m) | 9d | 2016-02-28 A | 2016-03-07 A | 8260TLWDn0060 SS+7d, 8260TUWDn0080 | 100% | 2016-04-16 | 2016-04-24 |  | Concrete Construction Labour [720 h]; Formwork [11.25 m2]; Grade 30 Concrete [11.25 m3] | 826_AB |
| 8260TUWDn0055 |  | Upper Wky at CP3 (30m) | 2d | 2016-02-29 A | 2016-03-07 A | 8260TUWDn0040, 8260TLWDn0055 | 100% | 2016-04-01 | 2016-04-02 |  | Formwork [2.5 m2]; Concrete Construction Labour [160 h]; Grade 30 Concrete [2.5 m3] | 826_AB |
| 8260TUWDn0010 |  | Upper Wky between HK Boundary and CP1 (104-15=89m-64=25m) | 6d | 2016-03-02 A | 2016-03-03 A | 8260TUWDn0030, 8260TLWDn0010 | 100% | 2016-05-16 | 2016-05-21 |  | Formwork [7.5 m2]; Concrete Construction Labour [480 h]; Grade 30 Concrete [7.5 m3] | 826_AB |
| 8260TUWDn0020 |  | Upper Wky at CP1 (30m) | 2d | 2016-03-03 A | 2016-03-03 A | 8260TUWDn0010, 8260TLWDn0020 | 100% | 2016-04-01 | 2016-04-02 |  | Concrete Construction Labour [160 h]; Formwork [2.5 m2]; Grade 30 Concrete [2.5 m3] | 826_AB |
| 8260TUWDn0090 |  | Upper Wky at CP5 (58m) | 3d | 2016-03-13 A | 2016-03-13 A | 8260TLWDn0090 | 100% | 2016-04-01 | 2016-04-03 |  | Formwork [3.75 m2]; Grade 30 Concrete [3.75 m3]; Concrete Construction Labour [240 h] | 826_AB |
| 8260TUWDn0140 |  | Upper Wky between 2B Gates(next to MPS) to MPS (12m) | 2d | 2016-04-30 A | 2016-04-30 A | 8260TLWDn0140 | 100% | 2016-05-01 | 2016-05-02 |  | Grade 30 Concrete [2.5 m3]; Formwork [2.5 m2]; Concrete Construction Labour [160 h] | 826_AB |

| ID | WBS | Activity | Type | Duration | Start | Finish | Predecessors | Complete | Planned start | Planned finish | Total float | Free float | Resources | user_text1 | CONTRACTS | COST CENTRE | SUB-LOCATION OF | AREAS / ROOMS | 826_As-built |
| --- | --- | --- | --- | --- | --- | --- | --- | --- | --- | --- | --- | --- | --- | --- | --- | --- | --- | --- | --- |
|  | 5 | **DT Tunnel Finishes** |  |  | 2016-03-01 | 2016-12-24 |  |  |  |  |  |  |  |  |  |  |  |  |  |
| 8260SWFDn0110 |  | Install trackside brackets (No.1 & 4) |  | 91d | 2016-03-01 A | 2016-03-30 A | 8260SWTDn0120 SS+5d | 100% | 2016-04-01 | 2016-06-30 |  |  | General Civil Engineering Labour [2880 h] | 0428 | 826 | D | TUNN | DT | 826_AB |
| 8260SWFDn0120 |  | Install trackside brackets (No.2 & 3) |  | 30d | 2016-03-01 A | 2016-03-30 A | 8260SWTDn0260, 8260SWFDn0110 FF | 100% | 2016-04-01 | 2016-04-30 |  |  | General Civil Engineering Labour [2400 h] |  |  |  |  |  | 826_AB |
| 8260SWFDn0065 |  | Submit Inspection and Testing Plan for Tunnel Finish works | milestone | 0d | 2016-12-01 | 2016-12-01 | 8260SWTDn0170 |  |  |  | 52d | 0d |  |  |  | D |  |  | 826_AB |
| 8260SWFDn0066 |  | Engineer's review on Inspection and Testing Plan |  | 17d | 2016-12-01 | 2016-12-17 | 8260SWFDn0065 |  |  |  | 52d | 0d |  |  |  | D |  |  | 826_AB |
| 8260SWFDn0067 |  | Wriggle survey and survey report submission |  | 7d | 2016-12-18 | 2016-12-24 | 8260TUWDn0140, 8260SWFDn0066, 8260TUWDn0110 |  |  |  | 52d | 0d |  |  | 826 | D | TUNN | DT | 826_AB |
|  | 4 | **Double Gates (DT)** |  |  | 2015-10-19 | 2016-03-31 |  |  |  |  |  |  |  |  |  |  |  |  |  |
| 8260SWFDn0010 |  | Install double gates at 20m south of CP6 |  | 6d | 2015-10-19 A | 2015-10-24 A | 8260SWTDn0170 | 100% | 2016-04-01 | 2016-04-06 |  |  | Temporary Works Steelworker [560 h]; Temporary Works Steel [8.75 t] |  |  |  |  |  | 826_AB |
| 8260SWFDn0020 |  | Lock up manlock when cutter head breakthrough cont' wall |  | 6d | 2015-10-25 A | 2015-11-05 A | 8260SWTDn0175 | 100% | 2016-04-01 | 2016-04-06 |  |  |  |  |  |  |  |  | 826_AB |
| 8260SWFDn0040 |  | Shift double gates to Mai Po Shaft after TBM removal |  | 6d | 2015-11-06 A | 2015-11-13 A | 8260SWTDn0260 | 100% | 2016-04-01 | 2016-04-06 |  |  | Temporary Works Steelworker [560 h] |  |  |  |  |  | 826_AB |
| 8260SWFDn0050 |  | Shift double gates back to Hong Kong Boundary |  | 6d | 2016-03-25 A | 2016-03-31 A | 8260TUWDn0080, 8260TUWDn0120, 8260TUWDn0130, 8260TUWDn0040, 8260TUWDn0055, 8260TUWDn0060, 8260TUWDn0100, 8260SWFDn0040, 8260TUWDn0050, 8260TUWDn0030, 8260TUWDn0010, 8260TUWDn0090, 8260TUWDn0110, 8260TUWDn0020, 8260TUWDn0070 | 100% | 2016-04-01 | 2016-04-06 |  |  | Temporary Works Steelworker [560 h] |  |  |  |  |  | 826_AB |
|  | 2 | **Up Track Tunnel Finishes to Deg. 1** |  |  | 2015-08-17 | 2016-12-22 |  |  |  |  |  |  |  |  |  |  |  |  |  |
|  | 1 | **Tunnel Invert Slab (UT)** |  |  | 2015-09-16 | 2016-04-15 |  |  |  |  |  |  |  |  |  |  |  |  |  |
| 8260TISUp0080 |  | Invert Slab between 2B Gates(next to MPS) to CP6 (192-13-20-20=139m) |  | 10d | 2015-09-16 A | 2016-02-23 A | 8260TISUp0010, 8260SWFUp0040 | 100% | 2016-04-01 | 2016-04-10 |  |  | Grade 30 Concrete [12.5 m3]; Concrete Construction Labour [800 h]; Formwork [12.5 m2] |  |  |  |  |  | 826_AB |
| 8260TISUp0075 |  | Invert Slab between CP6 and 2B Gates(next to CP6) (20m) |  | 2d | 2015-09-20 A | 2015-09-20 A | 8260SWXP50034 FS-1d | 100% | 2015-11-05 | 2015-11-06 |  |  | Grade 30 Concrete [2.5 m3]; Formwork [2.5 m2]; Concrete Construction Labour [160 h] |  |  |  |  |  | 826_AB |
| 8260TISUp0070 |  | Invert Slab at CP6 (26m) |  | 2d | 2015-09-20 A | 2016-02-23 A | 8260SWXP60139, 8260SWXP60137 | 100% | 2016-04-01 | 2016-04-02 |  |  | Grade 30 Concrete [2.5 m3]; Concrete Construction Labour [160 h]; Formwork [2.5 m2] |  |  |  |  |  | 826_AB |
| 8260TISUp0060 |  | Invert Slab between CP5 and CP6 (250-32=218m) |  | 13d | 2015-09-24 A | 2016-02-20 A | 8260TISUp0075 | 100% | 2015-12-19 | 2015-12-31 |  |  | Grade 30 Concrete [16.25 m3]; Formwork [16.25 m2]; Concrete Construction Labour [1040 h] |  |  |  |  |  | 826_AB |
| 8260TISUp0045 |  | Invert Slab between CP4 and CP5 (296-51=245m) |  | 15d | 2015-10-13 A | 2016-02-27 A | 8260TISUp0060 SS+2d | 100% | 2015-11-05 | 2015-11-19 |  |  | Grade 30 Concrete [18.75 m3]; Formwork [18.75 m2]; Concrete Construction Labour [1200 h] |  |  |  |  |  | 826_AB |
| 8260TISUp0050 |  | Invert Slab at CP5 (38m) |  | 2d | 2015-10-13 A | 2016-02-20 A | 8260SWXP50097, 8260SWXP50096 | 100% | 2016-04-01 | 2016-04-02 |  |  | Grade 30 Concrete [2.5 m3]; Concrete Construction Labour [160 h]; Formwork [2.5 m2] |  |  |  |  |  | 826_AB |
| 8260TISUp0035 |  | Invert Slab between CP3 and CP4 (226-47-34=145m) |  | 9d | 2015-10-23 A | 2016-02-26 A | 8260TISUp0045 | 100% | 2015-11-05 | 2015-11-13 |  |  | Grade 30 Concrete [11.25 m3]; Concrete Construction Labour [720 h]; Formwork [11.25 m2] |  |  |  |  |  | 826_AB |
| 8260TISUp0020 |  | Invert Slab between CP2 and CP3 (250-30=220m) |  | 13d | 2015-10-30 A | 2016-01-18 A | 8260TISUp0035 | 100% | 2016-04-05 | 2016-04-17 |  |  | Grade 30 Concrete [16.25 m3]; Concrete Construction Labour [1040 h]; Formwork [16.25 m2] |  |  |  |  |  | 826_AB |
| 8260TISUp0030 |  | Invert Slab at CP3 (30m) |  | 2d | 2015-10-30 A | 2016-01-15 A | 8260SWXP30100 | 100% | 2016-04-01 | 2016-04-02 |  |  | Grade 30 Concrete [2.5 m3]; Formwork [2.5 m2]; Concrete Construction Labour [160 h] |  |  |  |  |  | 826_AB |
| 8260TISUp0015 |  | Invert Slab between CP1 and CP2 (164-30=134m) incl. Station A area |  | 8d | 2015-11-06 A | 2016-01-24 A | 8260TISUp0020 | 100% | 2016-04-18 | 2016-04-25 |  |  | Grade 30 Concrete [10 m3]; Concrete Construction Labour [640 h]; Formwork [10 m2] |  |  |  |  |  | 826_AB |
| 8260TISUp0010 |  | Invert Slab between HK Boundary and CP1 (104-15=89m) |  | 6d | 2015-11-09 A | 2015-11-09 A | 8260TISUp0015 | 100% | 2016-04-26 | 2016-05-01 |  |  | Grade 30 Concrete [7.5 m3]; Concrete Construction Labour [480 h]; Formwork [7.5 m2] |  |  |  |  |  | 826_AB |
| 8260TISUp0012 |  | Invert Slab at CP1 (30m) |  | 2d | 2016-01-24 A | 2016-01-24 A | 8260SWXP10098, 8260TISUp0015, 8260TISUp0010 | 100% | 2016-04-26 | 2016-04-27 |  |  | Grade 30 Concrete [2.5 m3]; Formwork [2.5 m2]; Concrete Construction Labour [160 h] |  |  |  |  |  | 826_AB |
| 8260TISUp0018 |  | Invert Slab at CP2 (30m) |  | 2d | 2016-02-10 A | 2016-02-10 A | 8260SWXP20100, 8260TISUp0020, 8260SWXP20098 | 100% | 2016-04-18 | 2016-04-19 |  |  | Grade 30 Concrete [2.5 m3]; Formwork [2.5 m2]; Concrete Construction Labour [160 h] |  |  |  |  |  | 826_AB |
| 8260TISUp0038 |  | Invert Slab at Station B (34m) |  | 2d | 2016-02-26 A | 2016-02-26 A | 8260SWXPB130 | 100% | 2016-04-01 | 2016-04-02 |  |  | Grade 30 Concrete [2.5 m3]; Formwork [2.5 m2]; Concrete Construction Labour [160 h] |  |  |  |  |  | 826_AB |
| 8260TISUp0040 |  | Invert Slab at CP4 (64m) |  | 3d | 2016-02-26 A | 2016-02-26 A | 8260SWXP40098, 8260SWXP40100 | 100% | 2016-04-01 | 2016-04-03 |  |  | Grade 30 Concrete [3.75 m3]; Concrete Construction Labour [240 h]; Formwork [3.75 m2] |  |  |  |  |  | 826_AB |
| 8260TISUp0090 |  | Invert Slab between 2B Gates(next to MPS) to MPS (10m) |  | 2d | 2016-04-14 A | 2016-04-15 A | 8260SWFUp0050 | 100% | 2016-05-01 | 2016-05-02 |  |  | Grade 30 Concrete [2.5 m3]; Formwork [2.5 m2]; Concrete Construction Labour [160 h] |  |  |  |  |  | 826_AB |

| ID | WBS | Activity | Duration | Start | Finish | Predecessors | Complete | Planned start | Planned finish | Constraint | Resources | 826_As-built |
| --- | --- | --- | --- | --- | --- | --- | --- | --- | --- | --- | --- | --- |
|  | 2 | **Lower Walkway (UT)** |  | 2015-12-01 | 2016-04-15 |  |  |  |  |  |  |  |
| 8260TLWUp0060 |  | Lower Wkys between CP4 and CP5 (296-51=245m) | 15d | 2015-12-01 A | 2016-03-02 A | 8260TISUp0045 | 100% | 2016-04-01 | 2016-04-15 | start on or after 2015-11-18 | Grade 30 Concrete [18.75 m3]; Formwork [18.75 m2]; Concrete Construction Labour [1200 h] | 826_AB |
| 8260TLWUp0070 |  | Lower Wkys at CP5 (38m) | 2d | 2015-12-01 A | 2016-02-23 A | 8260TISUp0050 | 100% | 2016-04-01 | 2016-04-02 |  | Grade 30 Concrete [2.5 m3]; Concrete Construction Labour [160 h]; Formwork [2.5 m2] | 826_AB |
| 8260TLWUp0043 |  | Lower Wkys between CP3 and CP4 (226-47-34=145m) | 9d | 2015-12-14 A | 2016-03-02 A | 8260TISUp0035, 8260TLWUp0060 | 100% | 2016-04-16 | 2016-04-24 |  | Grade 30 Concrete [11.25 m3]; Concrete Construction Labour [720 h]; Formwork [11.25 m2] | 826_AB |
| 8260TLWUp0035 |  | Lower Wkys between CP2 and CP3 (250-30=220m) | 13d | 2015-12-17 A | 2016-02-10 A | 8260TLWUp0043, 8260TISUp0020 | 100% | 2016-04-25 | 2016-05-07 |  | Grade 30 Concrete [16.25 m3]; Concrete Construction Labour [1040 h]; Formwork [16.25 m2] | 826_AB |
| 8260TLWUp0040 |  | Lower Wkys at CP3 (30m) | 2d | 2015-12-18 A | 2016-02-05 A | 8260TISUp0030, 8260TLWUp0043 | 100% | 2016-04-25 | 2016-04-26 |  | Grade 30 Concrete [2.5 m3]; Formwork [2.5 m2]; Concrete Construction Labour [160 h] | 826_AB |
| 8260TLWUp0080 |  | Lower Wkys between CP5 and CP6 (250-32=218m) | 13d | 2015-12-22 A | 2015-12-23 A | 8260TLWUp0010, 8260TISUp0060 | 100% | 2016-04-01 | 2016-04-13 |  | Grade 30 Concrete [16.25 m3]; Formwork [16.25 m2]; Concrete Construction Labour [1040 h] | 826_AB |
| 8260TLWUp0090 |  | Lower Wkys at CP6 (26m) | 2d | 2015-12-25 A | 2015-12-25 A | 8260TISUp0070 | 100% | 2016-04-01 | 2016-04-02 |  | Grade 30 Concrete [2.5 m3]; Concrete Construction Labour [160 h]; Formwork [2.5 m2] | 826_AB |
| 8260TLWUp0100 |  | Lower Wkys between CP6 and 2B Gates(next to CP6) (20m) | 2d | 2015-12-25 A | 2015-12-25 A | 8260TLWUp0080, 8260TISUp0075 | 100% | 2016-04-01 | 2016-04-02 |  | Grade 30 Concrete [2.5 m3]; Formwork [2.5 m2]; Concrete Construction Labour [160 h] | 826_AB |
| 8260TLWUp0020 |  | Lower Wkys between CP1 and CP2 (164-30=134m) incl. Station A area | 8d | 2015-12-26 A | 2016-02-11 A | 8260TISUp0015, 8260TLWUp0035 | 100% | 2016-05-08 | 2016-05-15 |  | Grade 30 Concrete [10 m3]; Concrete Construction Labour [640 h]; Formwork [10 m2] | 826_AB |
| 8260TLWUp0110 |  | Lower Wkys between 2B Gates(next to MPS) to CP6 (192-13-20-20=139m) | 10d | 2015-12-26 A | 2016-02-29 A | 8260TLWUp0080, 8260TISUp0080 | 100% | 2016-04-01 | 2016-04-10 |  | Grade 30 Concrete [12.5 m3]; Concrete Construction Labour [800 h]; Formwork [12.5 m2] | 826_AB |
| 8260TLWUp0030 |  | Lower Wkys at CP2 (30m) | 2d | 2016-02-10 A | 2016-02-10 A | 8260TISUp0018, 8260TLWUp0035 | 100% | 2016-05-08 | 2016-05-09 |  | Grade 30 Concrete [2.5 m3]; Formwork [2.5 m2]; Concrete Construction Labour [160 h] | 826_AB |
| 8260TLWUp0015 |  | Lower Wkys at CP1 (30m) | 2d | 2016-02-11 A | 2016-03-07 A | 8260TISUp0012, 8260TLWUp0020 | 100% | 2016-05-16 | 2016-05-17 |  | Grade 30 Concrete [2.5 m3]; Formwork [2.5 m2]; Concrete Construction Labour [160 h] | 826_AB |
| 8260TLWUp0045 |  | Lower Wkys at Station B (34m) | 2d | 2016-03-02 A | 2016-03-02 A | 8260TISUp0038 | 100% | 2016-04-01 | 2016-04-02 |  | Concrete Construction Labour [160 h]; Grade 30 Concrete [2.5 m3]; Formwork [2.5 m2] | 826_AB |
| 8260TLWUp0050 |  | Lower Wkys at CP4 (64m) | 3d | 2016-03-02 A | 2016-03-02 A | 8260TISUp0040, 8260TLWUp0010, 8260TLWUp0060 | 100% | 2016-04-16 | 2016-04-18 |  | Grade 30 Concrete [3.75 m3]; Concrete Construction Labour [240 h]; Formwork [3.75 m2] | 826_AB |
| 8260TLWUp0010 |  | Lower Wkys between HK Boundary and CP1 (104-15=89m) | 6d | 2016-03-07 A | 2016-03-07 A | 8260TISUp0010, 8260TLWUp0020 | 100% | 2016-05-16 | 2016-05-21 |  | Grade 30 Concrete [7.5 m3]; Concrete Construction Labour [480 h]; Formwork [7.5 m2] | 826_AB |
| 8260TLWUp0120 |  | Lower Wkys between 2B Gates(next to MPS) to MPS (10m) | 2d | 2016-04-14 A | 2016-04-15 A | 8260TISUp0090 | 100% | 2016-05-01 | 2016-05-02 |  | Grade 30 Concrete [2.5 m3]; Formwork [2.5 m2]; Concrete Construction Labour [160 h] | 826_AB |
|  | 3 | **Upper Walkway (UT)** |  | 2016-01-07 | 2016-04-19 |  |  |  |  |  |  |  |
| 8260TUWUp0110 |  | Upper Wky between 2B Gates(next to MPS) to CP6 (192-13-20-20=139m) | 10d | 2016-01-07 A | 2016-03-03 A | 8260TUWUp0080, 8260TLWUp0110 | 100% | 2016-04-01 | 2016-04-10 |  | Grade 30 Concrete [12.5 m3]; Formwork [12.5 m2]; Concrete Construction Labour [800 h] | 826_AB |
| 8260TUWUp0090 |  | Upper Wky at CP6 (26m) | 2d | 2016-01-29 A | 2016-01-29 A | 8260TLWUp0090 | 100% | 2016-04-01 | 2016-04-02 |  | Grade 30 Concrete [2.5 m3]; Formwork [2.5 m2]; Concrete Construction Labour [160 h] | 826_AB |
| 8260TUWUp0100 |  | Upper Wky between CP6 and 2B Gates(next to CP6) (20m) | 2d | 2016-01-29 A | 2016-01-29 A | 8260TLWUp0100 | 100% | 2016-04-01 | 2016-04-02 |  | Grade 30 Concrete [2.5 m3]; Concrete Construction Labour [160 h]; Formwork [2.5 m2] | 826_AB |
| 8260TUWUp0080 |  | Upper Wky between CP5 and CP6 (250-32=218m) | 13d | 2016-01-29 A | 2016-02-01 A | 8260TLWUp0080 SS+7d, 8260TUWUp0010 | 100% | 2016-04-01 | 2016-04-13 |  | Grade 30 Concrete [16.25 m3]; Concrete Construction Labour [1040 h]; Formwork [16.25 m2] | 826_AB |
| 8260TUWUp0070 |  | Upper Wky at CP5 (38m) | 2d | 2016-02-01 A | 2016-02-01 A | 8260TLWUp0070 | 100% | 2016-04-01 | 2016-04-02 |  | Grade 30 Concrete [2.5 m3]; Formwork [2.5 m2]; Concrete Construction Labour [160 h] | 826_AB |
| 8260TUWUp0060 |  | Upper Wky between CP4 and CP5 (296-51=245m) | 15d | 2016-02-01 A | 2016-03-04 A | 8260TLWUp0060 SS+7d | 100% | 2016-04-01 | 2016-04-15 |  | Concrete Construction Labour [1200 h]; Formwork [18.75 m2]; Grade 30 Concrete [18.75 m3] | 826_AB |
| 8260TUWUp0043 |  | Upper Wky between CP3 and CP4 (226-47-34=145m) | 9d | 2016-02-02 A | 2016-03-04 A | 8260TLWUp0043 SS+7d, 8260TUWUp0060 | 100% | 2016-04-16 | 2016-04-24 |  | Grade 30 Concrete [11.25 m3]; Concrete Construction Labour [720 h]; Formwork [11.25 m2] | 826_AB |
| 8260TUWUp0035 |  | Upper Wky between CP2 and CP3 (250-30=220m) | 13d | 2016-02-03 A | 2016-02-15 A | 8260TUWUp0043, 8260TLWUp0035 SS+7d | 100% | 2016-04-25 | 2016-05-07 |  | Grade 30 Concrete [16.25 m3]; Concrete Construction Labour [1040 h]; Formwork [16.25 m2] | 826_AB |
| 8260TUWUp0040 |  | Upper Wky at CP3 (30m) | 2d | 2016-02-04 A | 2016-02-10 A | 8260TLWUp0040, 8260TUWUp0043 | 100% | 2016-04-25 | 2016-04-26 |  | Formwork [2.5 m2]; Concrete Construction Labour [160 h]; Grade 30 Concrete [2.5 m3] | 826_AB |
| 8260TUWUp0020 |  | Upper Wky between CP1 and CP2 (164-30=134m) incl. Station A area | 8d | 2016-02-11 A | 2016-02-29 A | 8260TUWUp0035, 8260TLWUp0020 SS+7d | 100% | 2016-05-08 | 2016-05-15 |  | Grade 30 Concrete [10 m3]; Concrete Construction Labour [640 h]; Formwork [10 m2] | 826_AB |
| 8260TUWUp0030 |  | Upper Wky at CP2 (30m) | 2d | 2016-02-15 A | 2016-02-15 A | 8260TLWUp0030 | 100% | 2016-04-01 | 2016-04-02 |  | Grade 30 Concrete [2.5 m3]; Formwork [2.5 m2]; Concrete Construction Labour [160 h] | 826_AB |
| 8260TUWUp0015 |  | Upper Wky at CP1 (30m) | 2d | 2016-02-29 A | 2016-03-08 A | 8260TUWUp0035, 8260TLWUp0015 | 100% | 2016-05-08 | 2016-05-09 |  | Grade 30 Concrete [2.5 m3]; Formwork [2.5 m2]; Concrete Construction Labour [160 h] | 826_AB |
| 8260TUWUp0045 |  | Upper Wky at Station B (34m) | 2d | 2016-03-04 A | 2016-03-04 A | 8260TLWUp0045 | 100% | 2016-04-01 | 2016-04-02 |  | Grade 30 Concrete [2.5 m3]; Formwork [2.5 m2]; Concrete Construction Labour [160 h] | 826_AB |
| 8260TUWUp0050 |  | Upper Wky at CP4 (64m) | 3d | 2016-03-04 A | 2016-03-04 A | 8260TLWUp0050 | 100% | 2016-04-01 | 2016-04-03 |  | Grade 30 Concrete [3.75 m3]; Formwork [3.75 m2]; Concrete Construction Labour [240 h] | 826_AB |
| 8260TUWUp0010 |  | Upper Wky between HK Boundary and CP1 (104-15=89m) | 6d | 2016-03-08 A | 2016-03-08 A | 8260TUWUp0020, 8260TLWUp0010 | 100% | 2016-05-16 | 2016-05-21 |  | Grade 30 Concrete [7.5 m3]; Concrete Construction Labour [480 h]; Formwork [7.5 m2] | 826_AB |
| 8260TUWUp0120 |  | Upper Wky between 2B Gates(next to MPS) to MPS (10m) | 2d | 2016-04-16 A | 2016-04-19 A | 8260TLWUp0120 | 100% | 2016-05-01 | 2016-05-02 |  | Grade 30 Concrete [2.5 m3]; Concrete Construction Labour [160 h]; Formwork [2.5 m2] | 826_AB |

| ID | WBS | Activity | Type | Duration | Start | Finish | Predecessors | Complete | Remaining | Planned start | Planned finish | Total float | Free float | Constraint | Resources | user_text1 | CONTRACTS | COST CENTRE | SUB-LOCATION OF | AREAS / ROOMS | 826_As-built |
| --- | --- | --- | --- | --- | --- | --- | --- | --- | --- | --- | --- | --- | --- | --- | --- | --- | --- | --- | --- | --- | --- |
|  | 5 | **Up Track Tunnel Finishes** |  |  | 2016-03-01 | 2016-12-22 |  |  |  |  |  |  |  |  |  |  |  |  |  |  |  |
| 8260SWFUp0110 |  | Install trackside brackets (No.1 & 4) |  | 91d | 2016-03-01 A | 2016-04-20 A | 8260PD0030, 8260SWTUp0157 SS+26d | 100% |  | 2016-04-01 | 2016-06-30 |  |  |  | General Civil Engineering Labour [2880 h] | 0428 | 826 | C | TUNN | DT | 826_AB |
| 8260SWFUp0120 |  | Install trackside brackets (No.2 & 3) |  | 30d | 2016-03-01 A | 2016-04-20 A | 8260SWFUp0110 FF, 8260SWTUp0260 | 100% |  | 2016-04-01 | 2016-04-30 |  |  |  | General Civil Engineering Labour [2400 h] |  |  |  |  |  | 826_AB |
| 8260SWFUp0065 |  | Submit Inspection and Testing Plan for Tunnel Finish | milestone | 0d | 2016-12-01 | 2016-12-01 | 8260SWTUp0160 |  |  |  |  | 54d | 0d |  |  |  |  | C |  |  |  |
| 8260SWFUp0066 |  | Engineer's review on Inspection and Testing Plan |  | 17d | 2016-12-01 | 2016-12-17 | 8260SWFUp0065 |  |  |  |  | 54d | 0d |  |  |  |  | C |  |  |  |
| 8260SWFUp0067 |  | Wriggle survey and survey report submission |  | 5d | 2016-12-18 | 2016-12-22 | 8260TUWUp0090, 8260SWFUp0066 |  |  |  |  | 54d | 2d |  |  |  | 826 | C | TUNN | DT |  |
|  | 4 | **UT Double Gates** |  |  | 2015-08-17 | 2016-03-31 |  |  |  |  |  |  |  |  |  |  |  |  |  |  |  |
| 8260SWFUp0010 |  | Install double gates at 20m south of CP6 |  | 6d | 2015-08-17 A | 2015-08-24 A | 8260SWTUp0160 SS+71d | 100% |  | 2015-11-05 | 2015-11-10 |  |  |  | Temporary Works Steelworker [560 h]; Temporary Works Steel [8.75 t] |  |  |  |  |  | 826_AB |
| 8260SWFUp0020 |  | Lock up manlock when cutter head breakthrough cont' wall |  | 6d | 2015-08-17 A | 2015-08-24 A | 8260SWTUp0170, 8260SWFUp0010 FF | 100% |  | 2015-11-11 | 2015-11-16 |  |  |  |  |  |  |  |  |  | 826_AB |
| 8260SWFUp0040 |  | Shift double gates to Mai Po Shaft after TBM removal |  | 6d | 2015-10-12 A | 2015-10-18 A | 8260SWFUp0020, 8260SWTUp0260 FS+1d | 100% |  | 2015-11-05 | 2015-11-10 |  |  |  | Temporary Works Steelworker [560 h] |  |  |  |  |  | 826_AB |
| 8260SWFUp0050 |  | Shift double gates back to Hong Kong Boundary |  | 6d | 2016-03-25 A | 2016-03-31 A | 8260TUWUp0020, 8260TUWUp0043, 8260TUWUp0090, 8260TUWUp0015, 8260TUWUp0045, 8260SWXP50130, 8260TUWUp0060, 8260TUWUp0070, 8260SWXP10140, 8260SWXP60139, 8260TUWUp0035, 8260SWXP40130, 8260SWXP20140, 8260TUWUp0010, 8260TUWUp0040, 8260TUWUp0050, 8260TUWUp0080, 8260TUWUp0100, 8260TUWUp0110, 8260SWXP30130, 8260SWXP50097, 8260TUWUp0030, 8260SWFUp0040 | 100% |  | 2016-04-01 | 2016-04-06 |  |  |  | Temporary Works Steelworker [560 h] |  |  |  |  |  | 826_AB |
|  | 60 | **Tunnel Finishes to Completion** |  |  | 2016-04-01 | 2017-03-31 |  |  |  |  |  |  |  |  |  |  |  |  |  |  |  |
|  | 1 | **Down Track** |  |  | 2016-04-01 | 2017-03-31 |  |  |  |  |  |  |  |  |  |  |  |  |  |  |  |
| 8260SWFDn0170 |  | Operation and maintenance of temporary services |  | 332d | 2016-04-01 A | 2017-03-31 | 8260CRinsp010 FS+1d | 30% | 121d | 2016-04-08 | 2017-03-05 | 0d |  |  |  |  | 826 | D | TUNN |  | 826_AB |
| 8260SWFDn0175 |  | Remove temporary services and utilities |  | 28d | 2017-03-04 | 2017-03-31 | 8260SWFDn0170 FF |  |  |  |  | 0d |  | start on or after 2016-12-01 | General Civil Engineering Labour [672 h] |  | 826 | D | TUNN |  | 826_AB |
|  | 2 | **Up Track** |  |  | 2016-04-01 | 2017-03-31 |  |  |  |  |  |  |  |  |  |  |  |  |  |  |  |
| 8260SWFUp0180 |  | Operation and maintenance of temporary services |  | 128d | 2016-04-01 A | 2017-03-31 | 8260CRinsp010 | 30% | 121d | 2016-06-01 | 2016-10-06 | 0d |  |  | General Civil Engineering Labour [2384 h] |  | 826 | C | TUNS |  | 826_AB |
| 8260SWFUp0185 |  | Remove temporary services and utilities |  | 28d | 2017-03-04 | 2017-03-31 | 8260SWFUp0180 FF |  |  |  |  | 0d |  |  | General Civil Engineering Labour [672 h] |  | 826 | C | TUNS |  | 826_AB |
|  | 20 | **Commissioning, Inspections and Completion** |  |  | 2016-03-25 | 2017-03-31 |  |  |  |  |  |  |  |  |  |  |  |  |  |  |  |
| 8260CRinsp010 |  | Site Cleaning, Inspection for Degree 1 Completion | resource dependent | 7d | 2016-03-25 A | 2016-03-31 A | 8260SWXP40130, 8260SWXP60139, 8260SWXP30130, 8260SWXP10140, 8260SWXP20140, 8260SWTUp0260, 8260MSB0195, 8260SWXP30100, 8260SWTDn0260, 8260SWFDn0120, 8260SWXP50130 FF+4d, 8260SWXP50097, 8260SWXP60140 FF+4d, 8260SWFUp0050, 8260SWFDn0050, 8260SWXP40100, 8260SWXPA0120, 8260SWFUp0120 | 100% |  | 2016-04-01 | 2016-04-07 |  |  |  |  |  | 826 | E |  |  | 826_AB |
| 8260CRinsp020 |  | Submit draft as-built drawings (Z8.2) and draft O&M Manuals | milestone | 0d | 2016-12-24 | 2016-12-24 | 8260SWFDn0067, 8260SWFUp0067, 8260CRinsp010 FS+91d |  |  |  |  | 52d | 0d |  |  |  | 826 | E |  |  |  |
| 8260CRinsp030 |  | Submit approved Design Data (Z8.4) | milestone | 0d | 2017-01-24 | 2017-01-24 | 8260CRinsp020 FS+31d |  |  |  |  | 59d |  |  |  |  | 826 | E |  |  |  |
| 8260CRinsp040 |  | Submit final as-built drawings and O&M Manuals | milestone | 0d | 2017-01-24 | 2017-01-24 | 8260MSA0150 |  |  |  |  | 52d | 0d |  |  |  | 826 | E |  |  |  |
| 8260CRinsp050 |  | Inspect & Certify completion of whole works |  | 7d | 2017-03-25 | 2017-03-31 | 8260SWFDn0175 FF, 8260TUWUp0120, 8260CRinsp040 FS+7d, 8260KD0040, 8260SWFUp0185 FF, 8260KD0060 FF+365d, 8260CRinsp030, 8260CRinsp020 FF |  |  |  |  | 0d |  |  |  |  | 826 | E |  |  |  |

| ID | WBS | Activity | Duration | Start | Finish | Predecessors | Complete | Planned start | Planned finish | CONTRACTS | COST CENTRE |
| --- | --- | --- | --- | --- | --- | --- | --- | --- | --- | --- | --- |
|  | 5 | **Contract Preliminaries** |  | 2010-03-15 | 2017-04-01 |  |  |  |  |  |  |
|  | 1 | **Designs and Submissions** |  | 2010-03-15 | 2014-03-31 |  |  |  |  |  |  |
|  | 1 | **Principle Method Statements, Plans and Programme** |  | 2010-03-15 | 2014-03-31 |  |  |  |  |  |  |
|  | 1 | **Management Plans and Programme** |  | 2010-03-15 | 2011-09-11 |  |  |  |  |  |  |
| 8260DS0020 |  | Submit Health and Safety Plan (G3.6.1) | 60d | 2010-03-15 A | 2010-05-04 A | 8260KD0010 | 100% | 2010-03-15 | 2010-05-14 | 826 | A |
| 8260DS0040 |  | Submit Prelimiary Master Programme (G4.6.1) | 60d | 2010-03-15 A | 2010-05-14 A | 8260KD0010 | 100% |  |  | 826 | A |
| 8260DS0050 |  | Submit first Three-Month Rolling Programme (G4.8 | 14d | 2010-03-15 A | 2010-04-01 A | 8260KD0010 | 100% | 2010-03-15 | 2010-03-29 | 826 | A |
| 8260DS0060 |  | Submit Time-chainage Programme (G4.11.1) | 60d | 2010-03-15 A | 2010-05-14 A | 8260KD0010 | 100% |  |  | 826 | A |
| 8260DS0120 |  | Submit Waste Management Plan (P22.8.1) | 60d | 2010-03-15 A | 2010-05-17 A | 8260KD0010 | 100% | 2010-03-15 | 2010-05-14 | 826 | A |
| 8260DS0160 |  | Submit Environmental Management Plan (G5.1.10) | 30d | 2010-03-15 A | 2010-05-10 A | 8260KD0010 | 100% | 2010-03-15 | 2010-04-14 | 826 | A |
| 8260DS0055 |  | Engineer's review on first Three-Month Rolling P | 28d | 2010-04-02 A | 2010-04-23 A | 8260DS0050 | 100% | 2010-04-02 | 2010-04-30 | 826 | A |
| 8260DS0140 |  | Submit Air Quality Management Plan (P22.4.4) | 60d | 2010-04-09 A | 2010-05-10 A | 8260KD0010 FS+25d | 100% | 2010-04-09 | 2010-06-08 | 826 | A |
| 8260DS0030 |  | Submit Quality Assurance Plan (G9.2.1) | 28d | 2010-04-15 A | 2010-05-11 A | 8260KD0010 | 100% | 2010-04-15 | 2010-05-13 | 826 | A |
| 8260DS0110 |  | Submit Water Pollution Control Measures and Moni | 45d | 2010-04-15 A | 2010-05-10 A | 8260KD0010 | 100% | 2010-04-15 | 2010-05-30 | 826 | A |
| 8260DS0100 |  | Submit Groundwater Monitoring and Emergency Resp | 45d | 2010-04-22 A | 2010-06-03 A | 8260KD0010 | 100% | 2010-04-22 | 2010-06-06 | 826 | A |
| 8260DS0080 |  | Submit Design Schedule (App Z) | 14d | 2010-05-03 A | 2010-05-27 A | 8260KD0010 | 100% | 2010-05-03 | 2010-05-17 | 826 | A |
| 8260DS0025 |  | Engineer's review on Health and Safety Plan | 28d | 2010-05-05 A | 2010-05-19 A | 8260DS0020 | 100% | 2010-05-05 | 2010-06-02 | 826 | A |
| 8260DS0115 |  | Engineer's review on Water Pollution Control Mea | 28d | 2010-05-11 A | 2010-05-25 A | 8260DS0110 | 100% | 2010-05-11 | 2010-06-08 | 826 | A |
| 8260DS0145 |  | Engineer's review on Air Quality Management Plan | 28d | 2010-05-11 A | 2010-05-25 A | 8260DS0140 | 100% | 2010-05-11 | 2010-06-08 | 826 | A |
| 8260DS0165 |  | Engineer's review on Environmental Management Pl | 28d | 2010-05-11 A | 2010-05-25 A | 8260DS0160 | 100% | 2010-05-11 | 2010-06-08 | 826 | A |
| 8260DS0035 |  | Engineer's review on Quality Assurance Plan | 28d | 2010-05-12 A | 2010-05-27 A | 8260DS0030 | 100% | 2010-05-12 | 2010-06-09 | 826 | A |
| 8260DS0045 |  | Engineer's review on Prelimiary Master Programme | 28d | 2010-05-15 A | 2010-06-02 A | 8260DS0040 | 100% | 2010-05-15 | 2010-06-12 | 826 | A |
| 8260DS0065 |  | Engineer's review on Time-chainage Programme | 28d | 2010-05-15 A | 2010-06-02 A | 8260DS0060 | 100% | 2010-05-15 | 2010-06-12 | 826 | A |
| 8260DS0090 |  | Submit Subcontractor Management Plan (App S) | 30d | 2010-05-15 A | 2010-06-14 A | 8260KD0010 | 100% |  |  | 826 | A |
| 8260DS0125 |  | Engineer's review on Waste Management Plan | 28d | 2010-05-18 A | 2010-06-04 A | 8260DS0120 | 100% | 2010-05-18 | 2010-06-15 | 826 | A |
| 8260DS0150 |  | Submit TBM manufacturiing and delivery programme | 28d | 2010-05-22 A | 2010-06-01 A | 8260PRTBM010 | 100% | 2010-05-22 | 2010-06-19 | 826 | A |
| 8260DS0010 |  | Submit System Assurance Plan (App P, P3.1) | 28d | 2010-05-24 A | 2010-06-28 A | 8260KD0010 | 100% | 2010-05-24 | 2010-06-21 | 826 | A |
| 8260DS0130 |  | Submit the Plan for the Design for Safety and Co | 28d | 2010-05-24 A | 2010-06-28 A | 8260KD0020 | 100% | 2010-05-24 | 2010-06-21 | 826 | A |
| 8260DS0085 |  | Engineer's review on Design Schedule | 28d | 2010-05-28 A | 2010-06-09 A | 8260DS0080 | 100% | 2010-05-28 | 2010-06-25 | 826 | A |
| 8260DS0155 |  | Engineer's review on TBM manufacturiing and deli | 28d | 2010-06-02 A | 2010-06-09 A | 8260DS0150 | 100% | 2010-06-02 | 2010-06-30 | 826 | A |
| 8260DS0105 |  | Engineer's review on Groundwater Monitoring and | 28d | 2010-06-04 A | 2010-06-23 A | 8260DS0100 | 100% | 2010-06-04 | 2010-07-02 | 826 | A |
| 8260DS0095 |  | Engineer's review on Subcontractor Management Pl | 28d | 2010-06-15 A | 2010-06-25 A | 8260DS0090 | 100% | 2010-06-15 | 2010-07-13 | 826 | A |
| 8260DS0015 |  | Engineer's review on System Assurance Plan | 28d | 2010-06-29 A | 2010-07-20 A | 8260DS0010 | 100% | 2010-06-29 | 2010-07-27 | 826 | A |
| 8260DS0135 |  | Engineer's review on Plan for the Design for Saf | 28d | 2010-06-29 A | 2010-07-20 A | 8260DS0130 | 100% | 2010-06-29 | 2010-07-27 | 826 | A |
| 8260DS0170 |  | Submit interfacing documentation for System-wide | 90d | 2011-08-01 A | 2011-08-31 A | 8260KD0010 FS+655d, 8260DS0155 | 100% | 2011-08-01 | 2011-10-30 | 826 | A |
| 8260DS0175 |  | Engineer's review on interfacing documentation f | 28d | 2011-09-01 A | 2011-09-11 A | 8260DS0170 | 100% | 2011-09-01 | 2011-09-29 | 826 | A |

| ID | WBS | Activity | Duration | Start | Finish | Predecessors | Complete | Planned start | Planned finish | CONTRACTS | COST CENTRE | SAe Task Tag |
| --- | --- | --- | --- | --- | --- | --- | --- | --- | --- | --- | --- | --- |
|  | 2 | **Method Statements** |  | 2010-04-09 | 2014-03-31 |  |  |  |  |  |  |  |
| 8260DS0190 |  | Submit Survey control network | 45d | 2010-04-09 A | 2010-07-21 A | 8260KD0010 FS+85d | 100% | 2010-04-09 | 2010-05-24 | 826 | A |  |
| 8260DS0220 |  | Submit MS for ground treatment | 68d | 2010-05-09 A | 2010-06-24 A | 8260KD0010 FS+55d | 100% | 2010-05-09 | 2010-07-16 | 826 | A | 1 |
| 8260DS0290 |  | Submit TBM MS for setting out and controlling the tunnel alignment (Survey MS CS21) | 60d | 2010-05-11 A | 2010-09-01 A | 8260KD0010 | 100% | 2010-05-11 | 2010-07-09 | 826 | A |  |
| 8260DS0390 |  | Submit Methods of Construction | 21d | 2010-05-27 A | 2010-06-17 A | 8260KD0010 FS+55d | 100% |  |  |  | A |  |
| 8260DS0210 |  | Submit a Ground Treatment Works spoil disposal plan | 45d | 2010-06-08 A | 2010-06-23 A | 8260KD0010 FS+85d | 100% | 2010-06-08 | 2010-07-23 | 826 | A |  |
| 8260DS0300 |  | Submit TBM MS for monitoring ground loss and settlement monitoring (X17.1.6) (CS36) | 0d | 2010-06-08 A | 2010-08-10 A | 8260KD0010 FS+595d | 100% | 2010-11-30 | 2010-11-30 | 826 | A |  |
| 8260DS0200 |  | Submit MS for surveying and survey control for tunnelling works | 30d | 2010-06-14 A | 2010-08-06 A | 8260KD0010 FS+85d | 100% | 2010-06-14 | 2010-07-14 | 826 | A |  |
| 8260DS0180 |  | Submit Geotechnical Instruments installation | 45d | 2010-06-18 A | 2010-08-04 A | 8260KD0010 FS+55d | 100% | 2010-06-18 | 2010-08-02 | 826 | A |  |
| 8260DS0395 |  | Engineer's review on Methods of Construction | 28d | 2010-06-18 A | 2010-07-29 A | 8260DS0390 | 100% | 2010-06-18 | 2010-07-16 |  | A |  |
| 8260DS0400 |  | Submit TBM Spoil Disposal Plan (HK) | 21d | 2010-06-23 A | 2010-07-21 A | 8260DS0390 | 100% | 2010-06-23 | 2010-07-14 |  | A |  |
| 8260DS0215 |  | Engineer's review on Ground Treatment Works spoil disposal plan | 28d | 2010-06-24 A | 2010-07-08 A | 8260DS0210 | 100% | 2010-06-24 | 2010-07-22 | 826 | A |  |
| 8260DS0225 |  | Engineer's review on MS for ground treatment | 28d | 2010-06-25 A | 2010-07-20 A | 8260DS0220 | 100% | 2010-06-25 | 2010-07-23 | 826 | A |  |
| 8260DS0195 |  | Engineer's review on Survey control network | 28d | 2010-07-22 A | 2010-07-29 A | 8260DS0190 | 100% | 2010-07-22 | 2010-08-19 | 826 | A |  |
| 8260DS0405 |  | Engineer's review on TBM Spoil Disposal Plan | 28d | 2010-07-22 A | 2010-08-04 A | 8260DS0400 | 100% | 2010-07-22 | 2010-08-19 |  | A |  |
| 8260DS0185 |  | Engineer's review on Geotechnical Instruments installation | 28d | 2010-08-05 A | 2010-08-11 A | 8260DS0180 | 100% | 2010-08-05 | 2010-09-02 | 826 | A |  |
| 8260DS0205 |  | Engineer's review on MS for surveying and survey control for tunnelling works | 28d | 2010-08-07 A | 2010-08-17 A | 8260DS0200 | 100% | 2010-08-07 | 2010-09-04 | 826 | A |  |
| 8260DS0305 |  | Engineer's review on TBM MS for monitoring ground loss & settlement monitoring | 0d | 2010-08-11 A | 2010-08-16 A | 8260DS0300 | 100% | 2010-08-11 | 2010-08-11 | 826 | A |  |
| 8260DS0280 |  | Submit TBM MS for commencing the initial drives (X17.1.2) (CS80) | 60d | 2010-08-23 A | 2011-06-10 A | 8260KD0010 | 100% | 2014-10-01 | 2014-11-29 | 826 | A |  |
| 8260DS0295 |  | Engineer's review on TBM MS for setting out & contolling the tunnel alignment | 28d | 2010-09-02 A | 2010-09-09 A | 8260DS0290 | 100% | 2014-11-30 | 2014-12-27 | 826 | A |  |
| 8260DS0230 |  | Submit TBM MS for transportation and erection of the TBMs (X.17.1.1) | 60d | 2010-10-04 A | 2010-12-15 A | 8260KD0010 FS+145d | 100% | 2010-10-04 | 2010-12-03 | 826 | A |  |
| 8260DS0240 |  | Submit TBM MS for operation of the TBM (X17.1.3) | 60d | 2010-10-04 A | 2010-12-15 A | 8260KD0010 FS+199d | 100% | 2010-10-04 | 2010-12-03 | 826 | A |  |
| 8260DS0285 |  | Engineer's review on TBM MS for commencing the initial drives | 28d | 2010-10-08 A | 2011-05-13 A | 8260DS0280 | 100% | 2014-11-30 | 2014-12-27 | 826 | A |  |
| 8260DS0320 |  | Submit MS for the identification and removal of obstructions (P11.11) (CS145) | 90d | 2010-11-15 A | 2011-05-11 A | 8260KD0010 FS+80d, 8260DS0315 FS+24d | 100% | 2014-10-01 | 2014-12-29 | 826 | A | 1 |
| 8260DS0235 |  | Engineer's review on TBM MS for transportation and erection of the TBMs | 28d | 2010-12-16 A | 2011-01-05 A | 8260DS0230 | 100% | 2010-12-16 | 2011-01-13 | 826 | A |  |
| 8260DS0245 |  | Engineer's review on TBM MS for operation of the TBM | 28d | 2010-12-16 A | 2011-01-05 A | 8260DS0240 | 100% | 2010-12-16 | 2011-01-13 | 826 | A |  |
| 8260DS0380 |  | Submit MS for TBM break though | 60d | 2010-12-17 A | 2011-01-19 A | 8260KD0010 FS+1000d | 100% | 2013-12-31 | 2014-03-01 | 826 | A |  |
| 8260DS0325 |  | Engineer's review on MS for the identification & removal of obstructions | 28d | 2011-01-05 A | 2011-05-26 A | 8260DS0320 | 100% | 2014-12-30 | 2015-01-26 | 826 | A |  |
| 8260DS0335 |  | Engineer's review on TBM MS for tunnelling under sensitive structures | 28d | 2011-01-05 A | 2011-05-26 A | 8260DS0330 | 100% | 2014-11-30 | 2014-12-27 | 826 | A |  |
| 8260DS0385 |  | Engineer's review on MS for TBM break though | 28d | 2011-01-20 A | 2011-01-25 A | 8260DS0380 | 100% | 2013-12-31 | 2014-01-28 | 826 | A |  |
| 8260DS0250 |  | Submit MS for instrumentation and monitoring works in Ramsar & WPC areas | 60d | 2011-02-28 A | 2011-03-07 A | 8260IP0070 | 100% | 2011-02-28 | 2011-04-29 | 826 | A |  |
| 8260DS0255 |  | Engineer's review on MS for instrumentation and monitoring works in Ramsar & WPC | 28d | 2011-03-08 A | 2011-03-25 A | 8260DS0250 | 100% | 2011-03-08 | 2011-04-05 | 826 | A |  |
| 8260DS0330 |  | Submit TBM MS for tunnelling under sensitive structures (X17.1.10) (CS145) | 60d | 2011-05-11 A | 2011-11-29 A | 8260KD0010 FS+745d, 8260DS0320 SS | 100% | 2014-10-01 | 2014-11-29 | 826 | A |  |
| 8260DS0350 |  | Submit TBM MS for junctions with shafts (X17.1.8) (CS246) | 60d | 2011-06-01 A | 2011-06-22 A | 8260KD0010 FS+595d, 8260DS0340 SS | 100% | 2014-10-01 | 2014-11-29 | 826 | A |  |
| 8260DS0355 |  | Engineer's review on TBM MS for junctions with shafts | 28d | 2011-06-23 A | 2011-07-12 A | 8260DS0350 | 100% | 2011-06-23 | 2011-07-20 | 826 | A |  |
| 8260DS0270 |  | Submit MS for cross passage construction | 28d | 2011-07-04 A | 2011-08-25 A | 8260KD0010, 8260DS0265 | 100% | 2011-07-04 | 2011-08-01 | 826 | A |  |
| 8260DS0275 |  | Engineer's review on MS for cross passage construction | 28d | 2011-08-29 A | 2011-09-25 A | 8260DS0270 | 100% | 2011-08-29 | 2011-09-26 | 826 | A |  |
| 8260DS0360 |  | Submit MS for ground freezing works (CS686) | 60d | 2011-12-12 A | 2012-03-18 A | 8260PRMSC080 FS+90d, 8260KD0010 | 100% | 2011-12-12 | 2012-02-10 | 826 | A |  |
| 8260DS0365 |  | Engineer's review on MS for ground freezing work | 28d | 2012-03-19 A | 2012-03-29 A | 8260DS0360 | 100% | 2012-03-19 | 2012-04-16 | 826 | A |  |
| 8260DS0410 |  | Submit TBM Spoil Disposal Plan (SZ) | 21d | 2012-06-23 A | 2012-07-21 A | 8260DS0400 | 100% | 2013-11-30 | 2013-12-21 |  | A |  |
| 8260DS0310 |  | Submit TBM MS for hyperbaric interventions (X17.1.7) (CS520) | 90d | 2012-10-03 A | 2014-02-10 A | 8260KD0010 FS+595d | 100% | 2014-10-01 | 2014-12-29 | 826 | A |  |
| 8260DS0315 |  | Engineer's review on TBM MS for hyperbaric interventions | 28d | 2012-10-18 A | 2014-02-24 A | 8260DS0310 | 100% | 2014-12-30 | 2015-01-26 | 826 | A |  |
| 8260DS0260 |  | Submit TBM MS for determining ground conditions ahead of the face (X17.1.5) (CS569) | 90d | 2012-12-21 A | 2014-03-14 A | 8260KD0010 FS+355d | 100% | 2014-10-01 | 2014-12-29 | 826 | A |  |
| 8260DS0340 |  | Submit TBM MS for TBM dismantling (X17.1.9) (CS652) | 90d | 2013-04-30 A | 2013-07-16 A | 8260KD0010 FS+845d, 8260DS0330 SS | 100% | 2015-02-20 | 2015-05-20 | 826 | A |  |
| 8260DS0265 |  | Engineer's review on TBM MS for determining ground conditions ahead of the face | 28d | 2013-05-03 A | 2014-03-31 A | 8260DS0260 FS+108d | 100% | 2015-04-17 | 2015-05-14 | 826 | A |  |
| 8260DS0345 |  | Engineer's review on TBM MS for TBM dismantling | 28d | 2013-07-17 A | 2013-08-16 A | 8260DS0340 | 100% | 2015-05-21 | 2015-06-17 | 826 | A |  |
| 8260DS0415 |  | Engineer's review on TBM Spoil Disposal Plan | 28d | 2013-11-26 A | 2013-12-17 A | 8260DS0410 | 100% | 2013-12-26 | 2014-01-23 |  | A |  |

Notes:
- 8260DS0320: P3 Activity Log Info: ??PS Appendix Z, Z2.2??Each MS will take 4 weeks / to prepare, 4 weeks for ??Engineer's review, 2 / weeks to resubmit and a further 4 weeks for / final review to ??A status

| ID | WBS | Activity | Type | Duration | Start | Finish | Predecessors | Complete | Planned start | Planned finish | CONTRACTS | COST CENTRE | 826_As-built |
| --- | --- | --- | --- | --- | --- | --- | --- | --- | --- | --- | --- | --- | --- |
|  | 2 | **Submissions to Government Departments** |  |  | 2010-05-29 | 2013-11-19 |  |  |  |  |  |  |  |
| 8260GV0010 |  | Apply for the initial batch of Frontier Closed Area Permits |  | 90d | 2010-05-29 A | 2010-08-26 A | 8260KD0020 FS+60d | 100% | 2010-05-29 | 2010-08-27 | 826 | A |  |
| 8260GV0020 |  | Submit Emergency Rescue proposals and procedures |  | 90d | 2011-10-31 A | 2012-02-20 A | 8260KD0010 FS+595d | 100% | 2011-10-31 | 2012-01-29 | 826 | A |  |
| 8260GV0030 |  | Engineer's review on Emergency Rescue proposals and procedures |  | 28d | 2013-03-07 A | 2013-03-25 A | 8260GV0020 | 100% | 2013-11-30 | 2013-12-28 | 826 | A |  |
| 8260GV0040 |  | Application and obtain approval of Construction Noise Permits |  | 60d | 2013-10-30 A | 2013-11-19 A | 8260GV0030 | 100% | 2014-04-04 | 2014-06-03 |  | A |  |
|  | 3 | **Temporary Works Design Submissions** |  |  | 2010-04-22 | 2014-03-22 |  |  |  |  |  |  |  |
| 8260TD0010 |  | Submit site logistics plans (initial layout) |  | 76d | 2010-04-22 A | 2010-07-23 A | 8260KD0020 FS+30d | 100% | 2010-04-22 | 2010-07-07 | 826 | A |  |
| 8260TD0030 |  | Submit designs for the Engineer's Office |  | 60d | 2010-07-12 A | 2010-08-23 A | 8260KD0020 FS+90d | 100% | 2010-07-12 | 2010-09-10 | 826 | A |  |
| 8260TD0020 |  | Engineer's review on site logistics plans (initial layout) |  | 28d | 2010-07-23 A | 2010-08-20 A | 8260TD0010 | 100% |  |  | 826 | A |  |
| 8260TD0040 |  | Engineer's review on designs for the Engineer's |  | 28d | 2010-08-23 A | 2010-08-30 A | 8260TD0030 | 100% | 2010-08-23 | 2010-09-20 | 826 | A |  |
| 8260TD0050 |  | Submit temporary ventilation system design |  | 60d | 2011-08-01 A | 2011-08-19 A | 8260KD0020 FS+410d | 100% | 2011-08-01 | 2011-09-30 | 826 | A |  |
| 8260TD0060 |  | Engineer's review on temporary ventilation syste |  | 28d | 2011-08-20 A | 2011-09-02 A | 8260TD0050 | 100% | 2011-08-20 | 2011-09-17 | 826 | A |  |
|  | 1 | **Design of Permanent Works** |  |  | 2010-06-01 | 2014-03-22 |  |  |  |  |  |  |  |
|  | 1 | **Tunnel Permanent Lining** |  |  | 2010-06-01 | 2011-11-28 |  |  |  |  |  |  |  |
| 8260PW0010 |  | Submission preparation & ICE checking |  | 36d | 2010-06-01 A | 2010-06-23 A | 8260KD0010 FS+49d | 100% | 2010-06-01 | 2010-07-07 | 826 | A | 826_AB |
| 8260PW0020 |  | Engineer's review |  | 28d | 2010-06-24 A | 2010-07-22 A | 8260PW0010 | 100% |  |  | 826 | A | 826_AB |
| 8260PW0030 |  | Re-submission preparation & ICE checking |  | 36d | 2010-07-26 A | 2010-08-03 A | 8260PW0020 | 100% | 2010-07-26 | 2010-08-31 | 826 | A | 826_AB |
| 8260PW0040 |  | Engineer's review |  | 28d | 2010-08-04 A | 2010-09-16 A | 8260PW0030 | 100% | 2010-08-04 | 2010-09-01 | 826 | A | 826_AB |
| 8260PW0050 |  | Submission for RDO/BD consultation |  | 28d | 2010-10-04 A | 2010-10-31 A | 8260PW0040 | 100% | 2010-10-04 | 2010-11-01 | 826 | A | 826_AB |
| 8260PW0060 |  | Re-submission for RDO/BD consultation |  | 28d | 2011-10-31 A | 2011-11-27 A | 8260PW0040, 8260PW0050 | 100% | 2011-10-31 | 2011-11-28 | 826 | A | 826_AB |
| 8260PW0070 |  | Construction drawings issuance | milestone | 0d | 2011-11-28 A | 2011-11-28 A | 8260PW0060 | 100% |  |  | 826 | A | 826_AB |
|  | 2 | **Permanent Tunnel Lining of Cross Passages** |  |  | 2010-06-28 | 2012-09-23 |  |  |  |  |  |  |  |
|  | 1 | **AIP Submission** |  |  | 2010-06-28 | 2012-09-23 |  |  |  |  |  |  |  |
| 8260PW0080 |  | Submission preparation |  | 40d | 2010-06-28 A | 2010-08-16 A | 8260KD0010 FS+105d | 100% | 2010-06-28 | 2010-08-07 | 826 | A | 826_AB |
| 8260PW0090 |  | Engineer's review |  | 28d | 2010-08-14 A | 2010-09-24 A | 8260PW0080 | 100% | 2010-08-14 | 2010-09-11 | 826 | A | 826_AB |
| 8260PW0100 |  | Re-submission preparation |  | 24d | 2012-08-03 A | 2012-08-30 A | 8260PW0090 | 100% | 2012-08-03 | 2012-08-27 | 826 | A | 826_AB |
| 8260PW0110 |  | Engineer's review |  | 28d | 2012-09-03 A | 2012-09-23 A | 8260PW0100 | 100% | 2012-09-03 | 2012-10-01 | 826 | A | 826_AB |

| ID | WBS | Activity | Type | Duration | Start | Finish | Predecessors | Complete | Planned start | Planned finish | CONTRACTS | COST CENTRE | 826_As-built |
| --- | --- | --- | --- | --- | --- | --- | --- | --- | --- | --- | --- | --- | --- |
|  | 3 | **Connection between Bored Tunnel and Retrival Shaft** |  |  | 2010-08-16 | 2011-05-27 |  |  |  |  |  |  |  |
| 8260PW0190 |  | Submission preparation & ICE checking |  | 40d | 2010-08-16 A | 2010-09-14 A | 8260KD0010 FS+147d | 100% | 2010-08-16 | 2010-09-25 | 826 | A | 826_AB |
| 8260PW0200 |  | Engineer's review |  | 28d | 2010-09-15 A | 2010-10-22 A | 8260PW0190 | 100% | 2010-10-04 | 2010-11-01 | 826 | A | 826_AB |
| 8260PW0210 |  | Re-submission preparation & ICE checking |  | 36d | 2010-10-23 A | 2011-03-04 A | 8260PW0200 | 100% | 2010-10-23 | 2010-11-28 | 826 | A | 826_AB |
| 8260PW0220 |  | Engineer's review |  | 28d | 2011-03-05 A | 2011-03-27 A | 8260PW0210 | 100% | 2012-10-06 | 2012-11-03 | 826 | A | 826_AB |
| 8260PW0230 |  | Submission for RDO/BD consultation |  | 28d | 2011-03-28 A | 2011-04-29 A | 8260PW0220 FS+96d | 100% | 2013-02-10 | 2013-03-10 | 826 | A | 826_AB |
| 8260PW0240 |  | Re-submission for RDO/BD consultation |  | 28d | 2011-04-30 A | 2011-05-26 A | 8260PW0230, 8260PW0220, 8260PW0210 | 100% | 2013-12-17 | 2014-01-14 | 826 | A | 826_AB |
| 8260PW0250 |  | Construction drawings issuance | milestone | 0d | 2011-05-27 A | 2011-05-27 A | 8260PW0240 | 100% | 2014-07-01 | 2014-07-01 | 826 | A | 826_AB |
|  | 4 | **Junction between Main Tunnel and Cross Passages** |  |  | 2010-10-04 | 2014-03-22 |  |  |  |  |  |  |  |
| 8260PW0260 |  | Submission preparation & ICE checking |  | 50d | 2010-10-04 A | 2010-12-16 A | 8260KD0010 FS+189d | 100% | 2010-10-04 | 2010-11-23 | 826 | A | 826_AB |
| 8260PW0270 |  | Engineer's review |  | 28d | 2012-01-12 A | 2012-02-16 A | 8260PW0260 | 100% | 2013-02-07 | 2013-03-07 | 826 | A | 826_AB |
| 8260PW0280 |  | Submission for RDO/BD consultation |  | 28d | 2013-10-01 A | 2013-10-23 A | 8260PW0270 | 100% | 2014-07-01 | 2014-07-29 | 826 | A | 826_AB |
| 8260PW0290 |  | Re-submission preparation & ICE checking |  | 40d | 2013-10-24 A | 2013-12-24 A | 8260PW0270 | 100% | 2014-07-01 | 2014-08-10 | 826 | A | 826_AB |
| 8260PW0300 |  | Engineer's review |  | 28d | 2013-12-25 A | 2014-02-19 A | 8260PW0290 | 100% | 2014-08-10 | 2014-09-07 | 826 | A | 826_AB |
| 8260PW0310 |  | Re-submission for RDO/BD consultation |  | 28d | 2014-02-20 A | 2014-03-21 A | 8260PW0300, 8260PW0280 | 100% | 2014-07-01 | 2014-07-29 | 826 | A | 826_AB |
| 8260PW0320 |  | Construction drawings issuance | milestone | 0d | 2014-03-22 A | 2014-03-22 A | 8260PW0310 | 100% | 2014-07-01 | 2014-07-01 | 826 | A | 826_AB |
|  | 2 | **Design of Temporary Works** |  |  | 2010-04-30 | 2014-01-14 |  |  |  |  |  |  |  |
|  | 1 | **Ground Treatment Works for TBM Break-in** |  |  | 2010-04-30 | 2010-11-02 |  |  |  |  |  |  |  |
| 8260TW0010 |  | Submission preparation & ICE checking |  | 36d | 2010-04-30 A | 2010-06-14 A | 8260KD0010 FS+35d | 100% | 2010-05-01 | 2010-06-06 | 826 | A | 826_AB |
| 8260TW0020 |  | Engineer's review |  | 28d | 2010-06-14 A | 2010-08-11 A | 8260TW0010 | 100% | 2010-06-14 | 2010-07-12 | 826 | A | 826_AB |
| 8260TW0030 |  | Re-submission preparation & ICE checking |  | 7d | 2010-06-30 A | 2010-08-11 A | 8260TW0020 | 100% | 2010-06-30 | 2010-07-07 | 826 | A | 826_AB |
| 8260TW0040 |  | Engineer's review |  | 28d | 2010-08-05 A | 2010-09-01 A | 8260TW0030 | 100% | 2010-08-05 | 2010-09-02 | 826 | A | 826_AB |
| 8260TW0043 |  | Submission for RDO/BD consultation |  | 28d | 2010-08-31 A | 2010-09-01 A | 8260TW0040 | 100% | 2010-08-31 | 2010-09-28 | 826 | A | 826_AB |
| 8260TW0045 |  | Re-submission for RDO/BD consultation |  | 28d | 2010-10-05 A | 2010-11-02 A | 8260TW0040, 8260TW0043 | 100% |  |  | 826 | A | 826_AB |
| 8260TW0050 |  | Construction drawings issuance | milestone | 0d | 2010-11-02 A | 2010-11-02 A | 8260TW0045 | 100% |  |  | 826 | A | 826_AB |

| ID | WBS | Activity | Type | Duration | Start | Finish | Predecessors | Complete | Planned start | Planned finish | CONTRACTS | COST CENTRE | 826_As-built |
| --- | --- | --- | --- | --- | --- | --- | --- | --- | --- | --- | --- | --- | --- |
|  | 2 | **Geotechnical Assessment Report** |  |  | 2010-06-14 | 2011-12-25 |  |  |  |  |  |  |  |
| 8260TW0060 |  | Submission preparation & ICE checking |  | 35d | 2010-06-14 A | 2010-10-03 A | 8260KD0010 FS+90d | 100% | 2010-06-14 | 2010-07-19 | 826 | A |  |
| 8260TW0070 |  | Engineer's review |  | 28d | 2010-10-04 A | 2010-10-20 A | 8260TW0060 | 100% | 2010-10-04 | 2010-11-01 | 826 | A |  |
| 8260TW0080 |  | Re-submission preparation & ICE checking |  | 15d | 2010-10-21 A | 2010-11-04 A | 8260TW0070 | 100% | 2010-10-21 | 2010-11-05 | 826 | A |  |
| 8260TW0090 |  | Engineer's review |  | 28d | 2010-11-05 A | 2010-11-22 A | 8260TW0080 | 100% | 2010-11-05 | 2010-12-03 | 826 | A |  |
| 8260TW0100 |  | Submission for RDO/BD consultation |  | 28d | 2011-10-31 A | 2011-11-27 A | 8260TW0090 | 100% | 2011-10-31 | 2011-11-28 | 826 | A |  |
| 8260TW0120 |  | Construction drawings issuance | milestone | 0d | 2011-10-31 A | 2011-10-31 A | 8260TW0110 | 100% |  |  | 826 | A |  |
| 8260TW0110 |  | Re-submission for RDO/BD consultation |  | 28d | 2011-11-28 A | 2011-12-25 A | 8260TW0100 | 100% | 2011-11-28 | 2011-12-26 | 826 | A |  |
|  | 3 | **Groundwater Assessment Report** |  |  | 2010-07-26 | 2011-10-31 |  |  |  |  |  |  |  |
| 8260TW0130 |  | Submission preparation & ICE checking |  | 35d | 2010-07-26 A | 2010-08-26 A | 8260KD0010 FS+135d | 100% | 2010-07-26 | 2010-08-30 | 826 | A |  |
| 8260TW0140 |  | Engineer's review |  | 28d | 2010-09-07 A | 2010-10-02 A | 8260TW0130 | 100% | 2010-09-07 | 2010-10-05 | 826 | A |  |
| 8260TW0170 |  | Submission for RDO/BD consultation |  | 28d | 2010-10-06 A | 2010-11-03 A | 8260TW0160 | 100% |  |  | 826 | A |  |
| 8260TW0180 |  | Re-submission for RDO/BD consultation |  | 28d | 2010-10-23 A | 2010-11-05 A | 8260TW0170, 8260TW0160 | 100% | 2010-10-23 | 2010-11-20 | 826 | A |  |
| 8260TW0150 |  | Re-submission preparation & ICE checking |  | 18d | 2010-11-03 A | 2010-11-22 A | 8260TW0140 | 100% | 2010-11-03 | 2010-11-21 | 826 | A |  |
| 8260TW0160 |  | Engineer's review |  | 28d | 2010-11-23 A | 2010-12-03 A | 8260TW0150 | 100% | 2010-11-23 | 2010-12-21 | 826 | A |  |
| 8260TW0190 |  | Construction drawings issuance | milestone | 0d | 2011-10-31 A | 2011-10-31 A | 8260TW0180 | 100% |  |  | 826 | A |  |
|  | 4 | **Ground Freezing and Temporary Support of Cross Passages** |  |  | 2010-12-31 | 2014-01-14 |  |  |  |  |  |  |  |
| 8260TW0200 |  | Submission preparation & ICE checking |  | 70d | 2010-12-31 A | 2012-03-26 A | 8260KD0010 FS+161d | 100% | 2011-01-01 | 2011-03-12 | 826 | A | 826_AB |
| 8260TW0210 |  | Engineer's review |  | 28d | 2011-11-28 A | 2011-12-20 A | 8260TW0200 | 100% | 2011-11-25 | 2011-12-23 | 826 | A | 826_AB |
| 8260TW0220 |  | Re-submission preparation & ICE checking |  | 45d | 2013-02-15 A | 2013-04-11 A | 8260TW0210 FS+336d | 100% | 2013-02-15 | 2013-04-01 | 826 | A | 826_AB |
| 8260TW0230 |  | Engineer's review |  | 28d | 2013-11-05 A | 2013-11-12 A | 8260TW0220 | 100% | 2013-12-31 | 2014-01-28 | 826 | A | 826_AB |
| 8260TW0240 |  | Submission for RDO/BD consultation |  | 28d | 2013-12-24 A | 2014-01-13 A | 8260TW0230 | 100% | 2013-12-31 | 2014-01-28 | 826 | A | 826_AB |
| 8260TW0250 |  | Re-submission for RDO/BD consultation |  | 28d | 2013-12-24 A | 2014-01-13 A | 8260TW0230 | 100% | 2014-08-01 | 2014-08-29 | 826 | A | 826_AB |
| 8260TW0260 |  | Construction drawings issuance | milestone | 0d | 2014-01-14 A | 2014-01-14 A | 8260TW0250, 8260TW0240 | 100% | 2014-08-01 | 2014-08-01 | 826 | A | 826_AB |

| ID | WBS | Activity | Type | Duration | Start | Finish | Predecessors | Complete | Planned start | Planned finish | CONTRACTS | COST CENTRE |
| --- | --- | --- | --- | --- | --- | --- | --- | --- | --- | --- | --- | --- |
|  | 5 | **Bulk Head for TBM Removal** |  |  | 2010-05-31 | 2011-10-31 |  |  |  |  |  |  |
| 8260TW0270 |  | Submission preparation & ICE checking |  | 70d | 2010-05-31 A | 2010-07-29 A | 8260KD0010 FS+145d | 100% | 2010-05-31 | 2010-08-09 | 826 | A |
| 8260TW0280 |  | Engineer's review |  | 28d | 2010-07-30 A | 2010-08-11 A | 8260TW0270 | 100% | 2010-07-30 | 2010-08-27 | 826 | A |
| 8260TW0290 |  | Re-submission preparation & ICE checking |  | 45d | 2010-08-12 A | 2010-09-15 A | 8260TW0280 | 100% | 2010-08-12 | 2010-09-26 | 826 | A |
| 8260TW0300 |  | Engineer's review |  | 28d | 2010-09-16 A | 2010-10-21 A | 8260TW0290 | 100% | 2010-09-16 | 2010-10-14 | 826 | A |
| 8260TW0310 |  | Construction drawings issuance | milestone | 0d | 2011-10-31 A | 2011-10-31 A | 8260TW0300 | 100% |  |  | 826 | A |
|  | 3 | **Prediction of Ground Movement** |  |  | 2010-07-12 | 2011-12-27 |  |  |  |  |  |  |
|  | 1 | **Report on the Prediction of Ground Movement and and Assessment on effect of EBS** |  |  | 2010-07-12 | 2011-12-27 |  |  |  |  |  |  |
| 8260PG0010 |  | Submission preparation & ICE checking |  | 36d | 2010-07-12 A | 2010-08-26 A | 8260KD0010 FS+119d | 100% | 2010-07-12 | 2010-08-17 | 826 | A |
| 8260PG0020 |  | Engineer's review |  | 28d | 2010-08-22 A | 2010-09-18 A | 8260PG0010 | 100% | 2010-08-22 | 2010-09-19 | 826 | A |
| 8260PG0030 |  | Re-submission preparation & ICE checking |  | 18d | 2010-09-29 A | 2010-10-12 A | 8260PG0020 | 100% | 2010-09-29 | 2010-10-17 | 826 | A |
| 8260PG0040 |  | Engineer's review |  | 28d | 2010-10-13 A | 2010-10-21 A | 8260PG0030 | 100% | 2010-10-13 | 2010-11-10 | 826 | A |
| 8260PG0050 |  | Submission for RDO/BD consultation |  | 28d | 2011-10-31 A | 2011-11-27 A | 8260PG0040 | 100% | 2011-10-31 | 2011-11-28 | 826 | A |
| 8260PG0060 |  | Re-submission for RDO/BD consultation |  | 28d | 2011-11-28 A | 2011-12-25 A | 8260PG0040, 8260PG0050 | 100% | 2011-11-28 | 2011-12-26 | 826 | A |
| 8260PG0070 |  | Construction drawings issuance | milestone | 0d | 2011-12-27 A | 2011-12-27 A | 8260PG0060 | 100% |  |  | 826 | A |
|  | 4 | **Instrumentation and Montoring Plans** |  |  | 2010-05-03 | 2011-11-28 |  |  |  |  |  |  |
|  | 1 | **Instrumentation Plan** |  |  | 2010-05-03 | 2011-11-28 |  |  |  |  |  |  |
| 8260IP0010 |  | Submission preparation & ICE checking |  | 25d | 2010-05-03 A | 2010-06-07 A | 8260KD0010 FS+49d | 100% | 2010-05-03 | 2010-05-28 | 826 | A |
| 8260IP0020 |  | Engineer's review |  | 28d | 2010-06-08 A | 2010-07-27 A | 8260IP0010 | 100% | 2010-06-08 | 2010-07-06 | 826 | A |
| 8260IP0030 |  | Re-submission preparation & ICE checking |  | 18d | 2010-07-28 A | 2010-08-10 A | 8260IP0020 | 100% | 2010-07-28 | 2010-08-15 | 826 | A |
| 8260IP0040 |  | Engineer's review |  | 28d | 2010-08-10 A | 2010-08-17 A | 8260IP0030 | 100% | 2010-08-10 | 2010-09-07 | 826 | A |
| 8260IP0050 |  | Submission for RDO/BD consultation |  | 28d | 2010-10-04 A | 2010-10-31 A | 8260IP0040 | 100% | 2010-10-04 | 2010-11-01 | 826 | A |
| 8260IP0060 |  | Re-submission for RDO/BD consultation |  | 28d | 2011-10-31 A | 2011-11-27 A | 8260IP0040, 8260IP0050 | 100% | 2011-10-31 | 2011-11-28 | 826 | A |
| 8260IP0070 |  | Construction drawings issuance | milestone | 0d | 2011-11-28 A | 2011-11-28 A | 8260IP0060 | 100% |  |  | 826 | A |

| ID | WBS | Activity | Type | Duration | Start | Finish | Predecessors | Complete | Planned start | Planned finish | CONTRACTS | COST CENTRE | 826_As-built |
| --- | --- | --- | --- | --- | --- | --- | --- | --- | --- | --- | --- | --- | --- |
|  | 5 | **Additional Ground Investigation Plans and Laboratory** |  |  | 2011-05-31 | 2012-03-03 |  |  |  |  |  |  |  |
|  | 1 | **Further GI Plan and Lab Test Schedule** |  |  | 2011-05-31 | 2012-03-03 |  |  |  |  |  |  |  |
| 8260GI0010 |  | Submission preparation & ICE checking |  | 35d | 2011-05-31 A | 2011-07-13 A | 8260KD0010 FS+76d | 100% | 2011-05-31 | 2011-07-05 | 826 | A |  |
| 8260GI0020 |  | Engineer's review |  | 28d | 2011-07-14 A | 2011-08-11 A | 8260GI0010 | 100% |  |  | 826 | A |  |
| 8260GI0030 |  | Re-submission preparation & ICE checking |  | 17d | 2011-10-31 A | 2011-11-18 A | 8260GI0020 | 100% | 2011-10-31 | 2011-11-17 | 826 | A |  |
| 8260GI0040 |  | Engineer's review |  | 28d | 2011-11-19 A | 2011-12-16 A | 8260GI0030 | 100% | 2011-11-19 | 2011-12-17 | 826 | A |  |
| 8260GI0050 |  | Submission for RDO/BD consultation |  | 28d | 2011-12-17 A | 2012-01-13 A | 8260GI0040 | 100% | 2011-12-17 | 2012-01-14 | 826 | A |  |
| 8260GI0060 |  | Re-submission for RDO/BD consultation |  | 28d | 2012-02-20 A | 2012-03-02 A | 8260GI0040, 8260GI0050 FS+576d | 100% | 2014-01-03 | 2014-01-31 | 826 | A |  |
| 8260GI0070 |  | Construction drawings issuance | milestone | 0d | 2012-03-03 A | 2012-03-03 A | 8260GI0060 | 100% | 2013-12-31 | 2013-12-31 | 826 | A |  |
|  | 2 | **Procurement** |  |  | 2010-03-15 | 2015-11-03 |  |  |  |  |  |  |  |
|  | 1 | **TBM Manufacture and Delivery** |  |  | 2010-03-15 | 2012-11-01 |  |  |  |  |  |  |  |
| 8260PRTBM010 |  | Confirmation of purchase order on TBM manufacture |  | 30d | 2010-03-15 A | 2010-04-21 A | 8260KD0010 | 100% | 2010-03-15 | 2010-04-14 | 826 | B | 826_AB |
| 8260PRTBM020 |  | Submit PO to the Engineer | milestone | 0d | 2010-04-25 A | 2010-04-25 A | 8260PRTBM010 FS+3d | 100% |  |  | 826 | B | 826_AB |
| 8260PRTBM030 |  | Shop drawing preparation and submission |  | 20d | 2010-07-15 A | 2010-08-23 A | 8260PRTBM010 FS+60d | 100% | 2010-07-15 | 2010-08-04 | 826 | B | 826_AB |
| 8260PRTBM080 |  | Manufacturing & purchase parts for TBM #1 |  | 70d | 2010-08-23 A | 2011-01-03 A | 8260PRTBM070, 8260PRTBM040 | 100% | 2010-08-23 | 2010-11-01 | 826 | B | 826_AB |
| 8260PRTBM040 |  | Shop drawing review by the Engineer |  | 28d | 2010-08-24 A | 2010-09-10 A | 8260PRTBM030 FS-7d | 100% | 2010-08-24 | 2010-09-21 | 826 | B | 826_AB |
| 8260PRTBM050 |  | Resubmission of shop drawings |  | 21d | 2010-10-04 A | 2010-11-17 A | 8260PRTBM040 FS-7d | 100% | 2010-10-04 | 2010-10-25 | 826 | B | 826_AB |
| 8260PRTBM090 |  | TBM #1 factory preassembly and packing |  | 70d | 2010-10-07 A | 2011-01-09 A | 8260PRTBM080 | 100% | 2010-10-07 | 2010-12-16 | 826 | B | 826_AB |
| 8260PRTBM060 |  | Engineer's approval of shop drawings |  | 28d | 2010-11-18 A | 2010-12-15 A | 8260PRTBM050 | 100% | 2010-11-18 | 2010-12-16 | 826 | B | 826_AB |
| 8260PRTBM100 |  | TBM #1 delivery to workshop |  | 30d | 2010-11-19 A | 2011-02-21 A | 8260PRTBM090 SS+30d | 100% | 2010-11-19 | 2010-12-19 | 826 | B | 826_AB |
| 8260PRTBM070 |  | Shop drawings issued for manufacture |  | 15d | 2010-12-16 A | 2010-12-31 A | 8260PRTBM060 | 100% |  |  | 826 | B | 826_AB |
| 8260PRTBM180 |  | Manufacturing & purchase parts for TBM #2 |  | 70d | 2010-12-16 A | 2011-08-28 A | 8260PRTBM080 SS+90d | 100% | 2010-12-16 | 2011-02-24 | 826 | B | 826_AB |
| 8260PRTBM110 |  | TBM #1 workshop assembly |  | 70d | 2011-01-07 A | 2011-05-15 A | 8260PRTBM100 SS+30d | 100% | 2011-01-07 | 2011-03-18 | 826 | B | 826_AB |
| 8260PRTBM190 |  | TBM #2 factory preassembly and packing |  | 70d | 2011-02-14 A | 2011-04-04 A | 8260PRTBM180 SS+23d | 100% | 2011-02-14 | 2011-04-25 | 826 | B | 826_AB |
| 8260PRTBM200 |  | TBM #2 delivery to workshop |  | 30d | 2011-03-05 A | 2011-04-18 A | 8260PRTBM190 SS+30d | 100% | 2011-03-05 | 2011-04-04 | 826 | B | 826_AB |
| 8260PRTBM120 |  | TBM #1 test runs, acceptance, dis-assembly and p |  | 30d | 2011-05-16 A | 2011-05-24 A | 8260PRTBM110 | 100% | 2011-05-16 | 2011-06-15 | 826 | B | 826_AB |
| 8260PRTBM130 |  | TBM #1 delivery to Shenzhen |  | 10d | 2011-05-25 A | 2011-05-29 A | 8260PRTBM120, 8260DS0235 | 100% | 2011-05-25 | 2011-06-04 | 826 | B | 826_AB |
| 8260PRTBM210 |  | TBM #2 workshop assembly |  | 70d | 2011-05-30 A | 2011-08-21 A | 8260PRTBM200 | 100% | 2011-05-30 | 2011-08-08 | 826 | B | 826_AB |
| 8260PRTBM140 |  | TBM #1 delivery to HGP shaft | milestone | 0d | 2011-05-30 A | 2011-05-30 A | 8260DS0245 FS+88d, 8260PRTBM130, 8260CPSM0020 | 100% |  |  | 826 | B | 826_AB |
| 8260PRTBM220 |  | TBM #2 test runs, acceptance, dis-assembly and p |  | 30d | 2011-08-22 A | 2011-09-18 A | 8260PRTBM210 | 100% | 2011-08-22 | 2011-09-21 | 826 | B | 826_AB |
| 8260PRTBM225 |  | TBM #2 delivery to temporary storage at Nansha |  | 3d | 2011-09-19 A | 2011-09-21 A | 8260PRTBM220 | 100% | 2011-09-19 | 2011-09-22 | 826 | B | 826_AB |
| 8260PRTBM150 |  | TBM #1 on-site assembly, T&C @ HGP Shaft |  | 90d | 2011-10-31 A | 2012-04-26 A | 8260PRTBM140 | 100% | 2011-10-31 | 2012-01-29 | 826 | B | 826_AB |
| 8260PRTBM230 |  | TBM #2 delivery to Shenzhen |  | 7d | 2012-04-01 A | 2012-04-30 A | 8260PRTBM225 | 100% | 2012-04-02 | 2012-04-09 | 826 | B | 826_AB |
| 8260PRTBM250 |  | TBM #2 on-site assembly, T&C @ HGP Shaft |  | 90d | 2012-04-05 A | 2012-08-21 A | 8260PRTBM150 FS-35d, 8260PRTBM240 FS-1d | 100% | 2012-04-05 | 2012-07-04 | 826 | B | 826_AB |
| 8260PRTBM160 |  | TBM #1 free walk-thru to commencement position |  | 20d | 2012-04-27 A | 2012-07-03 A | 8260PRTBM150 | 100% | 2012-04-27 | 2012-05-17 | 826 | B | 826_AB |
| 8260PRTBM240 |  | TBM #2 delivery to HGP shaft | milestone | 0d | 2012-05-01 A | 2012-05-01 A | 8260PRTBM230 | 100% |  |  | 826 | B | 826_AB |
| 8260PRTBM170 |  | TBM #1 ready to commence drive at HGP by GSG Contractor | milestone | 0d | 2012-07-04 A | 2012-07-04 A | 8260PRGSE160, 8260KD0030, 8260PRTBM160 | 100% |  |  | 826 | B | 826_AB |
| 8260PRTBM260 |  | TBM #2 free walk-thru to commencement position |  | 20d | 2012-10-01 A | 2012-10-25 A | 8260PRTBM250, 8260PRGSE170 | 100% | 2012-10-01 | 2012-10-21 | 826 | B | 826_AB |
| 8260PRTBM270 |  | TBM #2 ready to commence drive at HGP by GSG Con | milestone | 0d | 2012-11-01 A | 2012-11-01 A | 8260KD0050, 8260PRGSE165, 8260PRGSE156, 8260PRTBM260 | 100% |  |  | 826 | B | 826_AB |

| ID | WBS | Activity | Type | Duration | Start | Finish | Predecessors | Complete | Planned start | Planned finish | Resources | CONTRACTS | COST CENTRE | 826_As-built | REVISION |
| --- | --- | --- | --- | --- | --- | --- | --- | --- | --- | --- | --- | --- | --- | --- | --- |
|  | 2 | **TBM Ground Support Equipment** |  |  | 2010-07-08 | 2012-11-05 |  |  |  |  |  |  |  |  |  |
| 8260PRGSE010 |  | Confirm order for slurry treatment plant (STP) |  | 7d | 2010-07-08 A | 2010-07-28 A | 8260KD0010 FS+115d | 100% | 2010-07-08 | 2010-07-15 |  | 826 | B | 826_AB |  |
| 8260PRGSE020 |  | STP shop drawing preparation and submission |  | 14d | 2010-10-04 A | 2010-11-30 A | 8260PRGSE010 | 100% | 2010-10-04 | 2010-10-18 |  | 826 | B | 826_AB |  |
| 8260PRGSE030 |  | STP shop drawing review by the Engineer |  | 28d | 2010-12-01 A | 2010-12-08 A | 8260PRGSE020 | 100% | 2010-12-01 | 2010-12-29 |  | 826 | B | 826_AB |  |
| 8260PRGSE040 |  | STP procurement of components and materials |  | 45d | 2010-12-09 A | 2011-01-03 A | 8260PRGSE020 | 100% | 2010-12-09 | 2011-01-23 |  | 826 | B | 826_AB |  |
| 8260PRGSE050 |  | STP resubmission of shop drawings |  | 14d | 2011-01-10 A | 2011-04-04 A | 8260PRGSE030 | 100% | 2011-01-10 | 2011-01-24 |  | 826 | B | 826_AB |  |
| 8260PRGSE070 |  | STP shop drawings issued for manufacture |  | 7d | 2011-03-14 A | 2011-03-15 A | 8260PRGSE060 | 100% | 2011-03-14 | 2011-03-21 |  | 826 | B | 826_AB |  |
| 8260PRGSE080 |  | STP sub-unit assembly |  | 21d | 2011-03-16 A | 2011-03-22 A | 8260PRGSE040, 8260PRGSE070 | 100% | 2011-03-16 | 2011-04-06 |  | 826 | B | 826_AB | D1 |
| 8260PRGSE090 |  | STP final assembly at factory |  | 10d | 2011-03-23 A | 2011-03-29 A | 8260PRGSE080 | 100% | 2011-03-23 | 2011-04-02 |  | 826 | B | 826_AB | D1 |
| 8260PRGSE100 |  | STP factory testing |  | 10d | 2011-03-30 A | 2011-03-31 A | 8260PRGSE090 | 100% | 2011-03-30 | 2011-04-09 |  | 826 | B | 826_AB | D1 |
| 8260PRGSE110 |  | STP packaging and transportation to docks |  | 14d | 2011-04-01 A | 2011-04-04 A | 8260PRGSE100 | 100% | 2011-04-01 | 2011-04-15 |  | 826 | B | 826_AB | D1 |
| 8260PRGSE120 |  | STP shipping to Shenzhen, customs clearance and forwarding |  | 40d | 2011-04-04 A | 2011-04-11 A | 8260PRGSE110 | 100% | 2011-04-04 | 2011-05-14 |  | 826 | B | 826_AB | D1 |
| 8260PRGSE060 |  | STP Engineer's approval of shop drawings |  | 28d | 2011-04-05 A | 2011-04-13 A | 8260PRGSE050 | 100% | 2011-04-05 | 2011-05-03 |  | 826 | B | 826_AB |  |
| 8260PRGSE130 |  | STP delivery to HGP works area | milestone | 0d | 2011-04-12 A | 2011-04-12 A | 8260PRGSE120, 8260CPSM0020 | 100% |  |  |  | 826 | B | 826_AB | D1 |
| 8260PRGSE140 |  | STP on-site assembly |  | 24d | 2011-09-28 A | 2012-01-15 A | 8260PRTBM150 SS, 8260PRGSE130 | 100% | 2011-09-28 | 2011-10-22 | STP Support Ground Level Labour [3150 h] | 826 | B | 826_AB | D1 |
| 8260PRGSE150 |  | STP on-site self testing and commissioning |  | 11d | 2012-01-16 A | 2012-01-20 A | 8260PRGSE140 | 100% | 2012-01-16 | 2012-01-27 | STP Support Ground Level Labour [1134 h] | 826 | B | 826_AB | D1 |
| 8260PRGSE155 |  | STP on-site testing and commissioning with TBM#1 |  | 11d | 2012-06-17 A | 2012-07-10 A | 8260PRTBM150, 8260PRGSE150 | 100% | 2012-06-18 | 2012-06-29 | STP Support Ground Level Labour [1134 h] | 826 | B | 826_AB | D1 |
| 8260PRGSE160 |  | STP ready to commence operations for TBM #1 | milestone | 0d | 2012-06-18 A | 2012-06-18 A | 8260PRMSC030, 8260PRGSE155 | 100% |  |  |  | 826 | B | 826_AB | D1 |
| 8260PRGSE156 |  | STP on-site testing and commissioning with TBM#2 |  | 11d | 2012-10-03 A | 2012-11-03 A | 8260PRTBM250, 8260PRGSE150 | 100% | 2012-10-03 | 2012-10-14 | STP Support Ground Level Labour [1134 h] | 826 | B | 826_AB | D1 |
| 8260PRGSE165 |  | STP ready to commence operations for TBM #2 | milestone | 0d | 2012-11-05 A | 2012-11-05 A | 8260PRGSE156 | 100% |  |  |  | 826 | B | 826_AB | D1 |
|  | 3 | **Tunnel Lining Segments** |  |  | 2011-08-29 | 2015-11-03 |  |  |  |  |  |  |  |  |  |
| 8260PRTLS080 |  | Shop drawings issued for manufacture |  | 12d | 2011-08-29 A | 2011-08-31 A | 8260PW0070, 8260PRTLS010 | 100% | 2011-08-29 | 2011-09-10 |  | 826 | B | 826_AB |  |
| 8260PRTLS010 |  | Confirmation of purchase order on segment manufacturer | milestone | 0d | 2011-08-31 A | 2011-08-31 A | 8260KD0010, 8260PW0020 | 100% |  |  |  | 826 | B | 826_AB |  |
| 8260PRTLS090 |  | Pre-casting trials |  | 28d | 2011-11-03 A | 2011-12-08 A | 8260PRTLS080, 8260PRSM0210 | 100% | 2011-11-03 | 2011-12-01 |  | 826 | B | 826_AB |  |
| 8260PRTLS100 |  | Engineer's approval of trial segments |  | 28d | 2011-12-15 A | 2012-02-23 A | 8260PRTLS090 | 100% | 2011-12-15 | 2012-01-12 |  | 826 | B | 826_AB |  |
| 8260PRTLS1100 |  | Manufacture 926 Tunnel Rings (SZ) |  | 170d | 2012-02-01 A | 2012-08-31 A | 8260PRTLS100 FS-18d | 100% | 2012-02-01 | 2012-07-20 |  |  | B |  |  |
| 8260PRTLS130 |  | Ship & Deliver Tunnel Rings to HGP (SZ rings) |  | 147d | 2012-08-01 A | 2013-11-26 A | 8260PRTLS1100 FS-25d | 100% | 2012-08-01 | 2012-12-26 |  |  | B |  |  |
| 8260PRTLS1101 |  | Manufacture 163 Tunnel Rings (SZ) |  | 24d | 2012-09-01 A | 2012-09-28 A | 8260PRTLS1100 | 100% | 2012-09-01 | 2012-09-25 |  |  | B |  |  |
| 8260PRTLS1102 |  | Manufacture 105 Tunnel Rings (SZ) |  | 23d | 2012-10-03 A | 2012-10-30 A | 8260PRTLS1101 | 100% | 2012-10-03 | 2012-10-26 |  |  | B |  |  |
| 8260PRTLS1103 |  | Manufacture 98 Tunnel Rings (SZ) |  | 24d | 2012-10-31 A | 2012-11-21 A | 8260PRTLS1102 | 100% | 2012-10-31 | 2012-11-24 |  |  | B |  |  |
| 8260PRTLS1104 |  | Manufacture 250 Tunnel Rings (SZ) |  | 25d | 2012-11-25 A | 2013-01-15 A | 8260PRTLS1103 FS+1d | 100% | 2012-12-01 | 2012-12-26 |  |  | B |  |  |
| 8260PRTLS1105 |  | Manufacture 250 Tunnel Rings (SZ) |  | 25d | 2013-01-16 A | 2013-04-17 A | 8260PRTLS1104 | 100% | 2013-01-13 | 2013-02-07 |  |  | B |  |  |
| 8260PRTLS1106 |  | Manufacture 60 Tunnel Rings (SZ) |  | 22d | 2013-04-18 A | 2013-05-06 A | 8260PRTLS1105 | 100% | 2013-02-24 | 2013-03-18 |  |  | B |  |  |
| 8260PRTLS1200 |  | Manufacture 81 Tunnel Rings (HK) |  | 19d | 2013-06-01 A | 2013-06-30 A | 8260PRTLS1106, 8260PRSM0205 | 100% | 2013-06-01 | 2013-06-20 | Tunnel Segment Labour (Production) [1920 h]; Tunnel Segment Rings (Production) [81 NO] |  | B | 826_AB |  |
| 8260PRTLS1201 |  | Manufacture 76 Tunnel Rings (HK) |  | 20d | 2013-07-01 A | 2013-07-31 A | 8260PRTLS1200 | 100% | 2013-06-30 | 2013-07-20 | Tunnel Segment Labour (Production) [1600 h]; Tunnel Segment Rings (Production) [76 NO] |  | B | 826_AB |  |
| 8260PRTLS1202 |  | Manufacture 75 Tunnel Rings (HK) |  | 25d | 2013-08-01 A | 2013-08-30 A | 8260PRTLS1201 | 100% | 2013-07-01 | 2013-07-26 | Tunnel Segment Labour (Production) [1600 h]; Tunnel Segment Rings (Production) [75 NO] |  | B | 826_AB |  |
| 8260PRTLS1203 |  | Manufacture 88 Tunnel Rings (HK) |  | 24d | 2013-08-31 A | 2013-10-04 A | 8260PRTLS1202 | 100% | 2013-08-01 | 2013-08-25 | Tunnel Segment Labour (Production) [2400 h]; Tunnel Segment Rings (Production) [88 NO] |  | B | 826_AB |  |
| 8260PRTLS1204 |  | Manufacture 120 Tunnel Rings (HK) |  | 25d | 2013-10-05 A | 2013-11-30 A | 8260PRTLS1203 | 100% | 2013-09-01 | 2013-09-26 | Tunnel Segment Labour (Production) [2480 h]; Tunnel Segment Rings (Production) [120 NO] |  | B | 826_AB |  |
| 8260PRTLS140 |  | Ship & Deliver Tunnel Rings to HGP (HK rings) |  | 316d | 2013-11-27 A | 2015-11-03 A | 8260PRTLS1106 | 100% | 2013-11-30 | 2014-10-12 | General Civil Engineering Labour [3160 h] |  | B |  |  |
| 8260PRTLS1205 |  | Manufacture 120 Tunnel Rings (HK) |  | 24d | 2013-12-01 A | 2014-01-02 A | 8260PRTLS1204 | 100% | 2013-12-31 | 2014-01-24 | Tunnel Segment Labour (Production) [2400 h]; Tunnel Segment Rings (Production) [120 NO] |  | B | 826_AB |  |
| 8260PRTLS1206 |  | Manufacture 120 Tunnel Rings (HK) |  | 20d | 2014-01-03 A | 2014-03-27 A | 8260PRTLS1205 | 100% | 2013-12-31 | 2014-01-20 | Tunnel Segment Labour (Production) [2000 h]; Tunnel Segment Rings (Production) [120 NO] |  | B | 826_AB |  |
| 8260PRTLS1207 |  | Manufacture 120 Tunnel Rings (HK) |  | 3.9d | 2014-03-28 A | 2014-06-18 A | 8260PRTLS1206 | 100% | 2014-04-01 | 2014-04-04 | Tunnel Segment Labour (Production) [2000 h]; Tunnel Segment Rings (Production) [120 NO] |  |  | 826_AB |  |
| 8260PRTLS1208 |  | Manufacture 120 Tunnel Rings (HK) |  | 25d | 2014-06-19 A | 2014-08-27 A | 8260SWTDn0090, 8260PRTLS1207 | 100% | 2014-07-01 | 2014-07-26 | Tunnel Segment Labour (Production) [2480 h]; Tunnel Segment Rings (Production) [120 NO] |  |  | 826_AB |  |
| 8260PRTLS1209 |  | Manufacture 100 Tunnel Rings (HK) |  | 29d | 2014-08-28 A | 2014-12-01 A | 8260SWTDn0090, 8260PRTLS1208 | 100% | 2014-08-01 | 2014-08-30 | Tunnel Segment Labour (Production) [2400 h]; Tunnel Segment Rings (Production) [100 NO] |  |  | 826_AB |  |
| 8260PRTLS1210 |  | Manufacture 50 Tunnel Rings (HK) |  | 15d | 2014-12-02 A | 2015-01-03 A | 8260SWTDn0100, 8260PRTLS1209 | 100% | 2015-01-02 | 2015-01-16 | Tunnel Segment Labour (Production) [2480 h]; Tunnel Segment Rings (Production) [50 NO] |  |  | 826_AB |  |
| 8260PRTLS1211 |  | Manufacture 50 Tunnel Rings (HK) |  | 15d | 2015-01-04 A | 2015-01-27 A | 8260PRTLS1210, 8260SWTDn0105 | 100% | 2015-02-16 | 2015-03-02 | Tunnel Segment Labour (Production) [2480 h]; Tunnel Segment Rings (Production) [50 NO] |  |  | 826_AB |  |
| 8260PRTLS1212 |  | Manufacture 100 Tunnel Rings (HK) |  | 25d | 2015-01-28 A | 2015-04-15 A | 8260PRTLS1211, 8260SWTDn0105 | 100% | 2015-03-03 | 2015-03-27 | Tunnel Segment Labour (Production) [2400 h]; Tunnel Segment Rings (Production) [100 NO] |  |  | 826_AB |  |
| 8260PRTLS1213 |  | Manufacture 60 Tunnel Rings (HK) |  | 12d | 2015-04-16 A | 2015-04-29 A | 8260SWTDn0120, 8260PRTLS1212 | 100% | 2015-04-21 | 2015-05-02 | Tunnel Segment Labour (Production) [2400 h]; Tunnel Segment Rings (Production) [60 NO] |  |  | 826_AB |  |
| 8260PRTLS1214 |  | Manufacture 100 Tunnel Rings (HK) |  | 25d | 2015-04-30 A | 2015-05-23 A | 8260SWTDn0130, 8260PRTLS1213 | 100% | 2015-04-21 | 2015-05-15 | Tunnel Segment Labour (Production) [2000 h]; Tunnel Segment Rings (Production) [100 NO] |  |  | 826_AB |  |
| 8260PRTLS1215 |  | Manufacture 100 Tunnel Rings (HK) |  | 25d | 2015-05-24 A | 2015-06-18 A | 8260PRTLS1214, 8260SWTDn0140 | 100% | 2015-08-09 | 2015-09-02 | Tunnel Segment Labour (Production) [2000 h]; Tunnel Segment Rings (Production) [100 NO] |  |  | 826_AB |  |
| 8260PRTLS1216 |  | Manufacture 10 Tunnel Rings (HK) |  | 5d | 2015-06-19 A | 2015-06-24 A | 8260PRTLS1215, 8260SWTDn0150 | 100% | 2015-09-03 | 2015-09-07 | Tunnel Segment Labour (Production) [400 h]; Tunnel Segment Rings (Production) [10 NO] |  |  | 826_AB |  |

| ID | WBS | Activity | Type | Duration | Start | Finish | Predecessors | Complete | Remaining | Planned start | Planned finish | Total float | Resources | CONTRACTS | COST CENTRE | 826_As-built | REVISION |
| --- | --- | --- | --- | --- | --- | --- | --- | --- | --- | --- | --- | --- | --- | --- | --- | --- | --- |
|  | 4 | **Segment Mould Design, Fabrication and Delivery** |  |  | 2011-05-15 | 2012-02-22 |  |  |  |  |  |  |  |  |  |  |  |
| 8260PRSM0010 |  | Confirm order for moulds | milestone | 0d | 2011-05-15 A | 2011-05-15 A | 8260PW0060 | 100% |  | 2011-05-16 | 2011-05-16 |  |  | 826 | B | 826_AB |  |
| 8260PRSM0020 |  | Design and planning |  | 24d | 2011-05-16 A | 2011-08-30 A | 8260PRSM0010 | 100% |  | 2011-05-16 | 2011-06-09 |  |  | 826 | B | 826_AB |  |
| 8260PRSM0030 |  | Design mould drawings for manufacture |  | 30d | 2011-07-08 A | 2011-08-29 A | 8260PRSM0020 SS+6d | 100% |  | 2011-07-08 | 2011-08-07 |  |  | 826 | B | 826_AB |  |
| 8260PRSM0040 |  | Materials procurement |  | 20d | 2011-07-08 A | 2011-08-26 A | 8260PRSM0020 FS-12d, 8260PRMSC010 | 100% |  | 2011-07-08 | 2011-07-28 |  |  | 826 | B | 826_AB |  |
| 8260PRSM0110 |  | Factory assembly |  | 60d | 2011-07-18 A | 2011-09-22 A | 8260PRSM0040 SS+7d | 100% |  | 2011-07-18 | 2011-09-16 |  |  | 826 | B | 826_AB |  |
| 8260PRSM0200 |  | Shipping and delivery to Shenzhen - 1st batch (3 sets) |  | 5d | 2011-11-05 A | 2011-11-09 A | 8260PRSM0110 SS+21d, 8260PRSM0030 | 100% |  | 2011-11-05 | 2011-11-10 |  |  | 826 | B | 826_AB | D1 |
| 8260PRSM0210 |  | Mould erection and commissioning ready for production in precast yard |  | 7d | 2011-11-10 A | 2012-02-22 A | 8260PRSM0200 | 100% |  | 2011-11-10 | 2011-11-17 |  |  | 826 | B | 826_AB | D1 |
| 8260PRSM0205 |  | Shipping and delivery to Shenzhen - 2nd batch (3 sets) |  | 5d | 2012-02-10 A | 2012-02-15 A | 8260PRSM0110 | 100% |  |  |  |  |  | 826 | B | 826_AB | D1 |
|  | 5 | **Other Procurement Items** |  |  | 2010-11-02 | 2013-12-17 |  |  |  |  |  |  |  |  |  |  |  |
| 8260PRMSC050 |  | Rental agreement for off site office accommodation |  | 30d | 2010-11-02 A | 2010-11-30 A | 8260KD0010 | 100% |  | 2010-11-02 | 2010-12-02 |  |  | 826 | B |  |  |
| 8260PRMSC030 |  | Procure other major construction plant and equip |  | 90d | 2011-03-01 A | 2011-04-30 A | 8260KD0010 FS+120d | 100% |  | 2011-03-01 | 2011-05-30 |  |  | 826 | B |  |  |
| 8260PRGSE170 |  | Transformer and substation procurement |  | 90d | 2011-05-31 A | 2011-09-14 A | 8260KD0010 FS+120d, 8260PRTBM120 FS+90d | 100% |  | 2011-05-31 | 2011-08-29 |  |  | 826 | B |  |  |
| 8260PRMSC010 |  | Procure temporary electrics subcontractor |  | 30d | 2011-06-01 A | 2011-07-03 A | 8260PRMSC030 | 100% |  | 2011-06-01 | 2011-07-01 |  |  | 826 | B |  |  |
| 8260PRMSC040 |  | Place order for rebar supply |  | 36d | 2011-10-31 A | 2011-12-11 A | 8260KD0010 FS+800d | 100% |  | 2011-10-31 | 2011-12-06 |  |  | 826 | B |  |  |
| 8260PRMSC070 |  | Procure tunnel ventilation system |  | 40d | 2012-03-01 A | 2012-04-29 A | 8260TD0060, 8260PRTBM170 FS-120d | 100% |  | 2012-03-01 | 2012-04-10 |  |  | 826 | B |  |  |
| 8260PRMSC020 |  | Place order for ready mixed concrete |  | 36d | 2013-03-01 A | 2013-03-31 A | 8260PRMSC030 | 100% |  | 2013-03-01 | 2013-04-06 |  |  | 826 | B |  |  |
| 8260PRMSC080 |  | Procure ground freezing specialist subcontractor |  | 36d | 2013-04-02 A | 2013-05-24 A | 8260KD0010 | 100% |  | 2014-03-01 | 2014-04-06 |  |  | 826 | B |  |  |
| 8260PRMSC060 |  | Procure tunnel personnel electronic tagging system |  | 42d | 2013-10-30 A | 2013-12-17 A | 8260PRMSC040 | 100% |  | 2013-11-30 | 2014-01-11 |  |  | 826 | B |  |  |
|  | 3 | **Site Mobilisation** |  |  | 2010-03-15 | 2017-04-01 |  |  |  |  |  |  |  |  |  |  |  |
| 8260CPSM0010 |  | Initial project staff assignments |  | 90d | 2010-03-15 A | 2010-06-12 A | 8260KD0010 | 100% |  | 2010-03-15 | 2010-06-13 |  |  | 826 | A |  |  |
| 8260CPSM0040 |  | Establish and operate Project Office in Hong Kong |  | 302d | 2010-04-22 A | 2011-03-14 A | 8260KD0020 FS+30d, 8260CPSM0010 FF | 100% |  | 2010-04-22 | 2011-02-18 |  |  | 826 | A |  |  |
| 8260CPSM0020 |  | Establish Works Areas at HGP |  | 48d | 2010-12-01 A | 2012-01-12 A | 8260KD0010 FS+270d | 100% |  | 2010-12-01 | 2011-01-18 |  | General Civil Engineering Labour [1200 h] | 826 | A |  |  |
| 8260CPSM0050 |  | Establish and operate Project Office in Shenzhen |  | 2091d | 2011-01-10 A | 2017-02-28 | 8260SWHG0020 SS, 8260KD0060 FF+182d, 8260SWHG0010 SS | 93% | 90d | 2011-01-10 | 2016-10-01 | 31d | General Civil Engineering Labour [3150 h] | 826 | A | 826_AB |  |
| 8260CPSM0060 |  | Establish and operate Project Office in Mai Po |  | 1228d | 2011-03-15 A | 2017-02-28 | 8260AC0090, 8260SWHG0010, 8260KD0060 FF+182d | 93% | 90d | 2011-03-15 | 2014-07-25 | 31d | General Civil Engineering Labour [32640 h] | 826 | A | 826_AB |  |
| 8260CPSM0030 |  | Establish Works Areas at MPV |  | 36d | 2013-02-01 A | 2013-03-28 A | 8260CPSM0020 | 100% |  | 2013-02-01 | 2013-03-09 |  | General Civil Engineering Labour [896 h] | 826 | A |  |  |
| 8260CPSM0070 |  | Commencement to operate compound at Mai Po, Area 1.19, for DLP | milestone | 0d | 2017-04-01 | 2017-04-01 | 8260KD0070 |  |  |  |  | 0d |  | 826 | A |  |  |

## Activity codes

| Code | Value | Meaning |
| --- | --- | --- |
| 826_As-built | 826_AB | 826 As-built |
| 826_As-built_verified | 826_ABV | 826 As-built_verified |
| AREAS / ROOMS | DT | Track Area - Down Track |
| CONTRACTS | 826 | 826 - Huanggang to Mai Po Tunnels |
| COST CENTRE | A | Cost Centre A |
| COST CENTRE | B | Cost Centre B |
| COST CENTRE | C | Cost Centre C |
| COST CENTRE | D | Cost Centre D |
| COST CENTRE | E | Cost Centre E |
| LOCATION OF WORK | 2610 | 826 Bored Tunnels |
| LOCATION OF WORK | 2620 | 826 Huanggang Shaft / Cavern |
| REVISION | D | Revision D |
| REVISION | D1 | Revision D1 (minor revisions to resource assignm |
| SUB-LOCATION OF | CP | Cross Passages |
| SUB-LOCATION OF | TUNN | Tunnels - Northbound |
| SUB-LOCATION OF | TUNS | Tunnels - Southbound |
| WORKS AREA | 1.16 | Works Area 1.16 |
| WORKS AREA | 1.17 | Works Area 1.17 |
| WORKS AREA | 1.19 | Works Area 1.19 |
| WORKS AREA | 1.21 | Works Area 1.21 |
| WORKS AREA | 1.3 | Works Area 1.3 |
| WORKS AREA | 1.4A | Works Area 1.4A |
| WORKS AREA | 1.4B | Works Area 1.4B |
| WORKS AREA | 1.5 | Works Area 1.5 |
| WORKS AREA | 1.6 | Works Area 1.6 |
