# As-built period from Dec 2015 to May 2017

Schedule from Primavera P6, 2013-09-11 to 2018-01-02, data date 2017-05-31, A marks actual dates.

## Calendars

- W11 6 day site - stoppage at CNY: Mon-Sat 08:00-12:00, 13:00-17:00; Sun off. Exceptions (off unless hours are given): 2013-09-19, 2013-10-01, 2013-10-09, 2013-12-25 to 2013-12-26, 2014-01-01, 2014-01-30 to 2014-02-01, 2014-04-05, 2014-05-01, 2014-06-02, 2014-07-01, 2014-09-08 08:00-12:00, 13:00-17:00, 2014-09-09, 2014-10-01 to 2014-10-02, 2014-12-25 to 2014-12-26, 2015-01-01, 2015-02-16 to 2015-02-21, 2015-04-06, 2015-05-01, 2015-06-20, 2015-07-01, 2015-09-28, 2015-10-01, 2015-10-21, 2015-12-25 to 2015-12-26, 2016-01-01, 2016-12-25, 2017-01-01 to 2017-01-02, 2017-01-28, 2017-01-30 to 2017-01-31, 2017-12-25, 2018-01-01.
- W11 6 day site - no stoppage at CNY: Mon 08:00-16:00; Tue-Sat 08:00-12:00, 13:00-17:00; Sun off. Exceptions (off unless hours are given): 2013-09-19, 2013-10-01, 2013-10-09, 2013-12-25 to 2013-12-26, 2014-01-01, 2014-01-30 to 2014-02-01, 2014-04-05, 2014-05-01, 2014-06-02, 2014-07-01, 2014-09-08, 2014-10-01 to 2014-10-02, 2014-12-25 to 2014-12-26, 2015-01-01, 2015-02-16 to 2015-02-18 08:00-16:00, 2015-02-19 to 2015-02-21, 2015-04-06, 2015-05-01, 2015-09-28, 2015-12-25, 2016-01-01, 2016-12-25, 2017-01-01, 2017-12-25, 2018-01-01.
- W11 7 day no hols: Mon-Sun 08:00-16:00. Exceptions (off unless hours are given): 2014-02-01, 2015-12-25, 2016-01-01, 2016-12-25, 2017-01-01, 2017-12-25, 2018-01-01.
- 05 LAL 7 D/W (No Holiday): Mon-Sun 08:00-16:00.
- M: Mon-Sun 08:00-16:00.

## Schedule

| ID | WBS | Activity | Type | Duration | Start | Finish | Predecessors | Complete | Planned start | Planned finish | Total float | Free float | Constraint | Calendar | Contract Key Dates |
| --- | --- | --- | --- | --- | --- | --- | --- | --- | --- | --- | --- | --- | --- | --- | --- |
|  | 1 | **Key Dates** |  |  | 2013-09-11 | 2018-01-02 |  |  |  |  |  |  |  |  |  |
|  | 1 | **Appendix C2 - Critical Dates** |  |  | 2013-09-11 | 2017-06-21 |  |  |  |  |  |  |  |  |  |
|  | 1 | **Table 1 - Whole of the Works** |  |  | 2017-03-23 | 2017-03-23 |  |  |  |  |  |  |  |  |  |
| 822-KD-CD-1000 |  | Completion of the Whole of the Works | milestone | 0d | 2017-03-23 A | 2017-03-23 A | 822-KD-P-2000 FF, 822-KD-DC-1250 SF, 822-KD-IPS-A13 FF, 822-KD-IPS-A14 FF, 822-KD-IPS-C06 FF, 822-KD-IPS-C08A FF, 822-KD-IPS-D07A FF, 822-KD-IPS-E07 FF, 822-KD-IPS-F08 FF, 822-KD-IPS-F09 FF, 822-KD-IPS-F10 FF, 822-KD-IPS-F11A FF, 822-KD-IPS-G02 FF, 822-KD-IPS-G03 FF, 822-KD-IPS-G04 FF, 822-KD-IPS-G05 FF, 822-KD-IPS-G06 FF, 822-KD-IPS-G07A FF, 822-KD-IPS-C0627 FF, 822-KD-IPS-F0697 FF, 822-KD-IPS-G0112, 822-KD-IPS-G0122 | 100% | 2017-11-12 | 2017-11-12 |  |  | finish on or before 2015-05-10 | W11 7 day no hols | 01 |
|  | 2 | **Table 4 - Specified Degrees of Completion** |  |  | 2013-09-11 | 2017-06-21 |  |  |  |  |  |  |  |  |  |
| 822-KD-SDC-4C-1 |  | PH Vent Building - all rooms and common areas Degree 1 | milestone | 0d | 2013-09-11 A | 2013-09-11 A |  | 100% | 2016-11-27 | 2016-11-27 |  |  |  | W11 7 day no hols | 01 |
| 822-KD-SDC-4C-2 |  | PH Vent Building - all rooms and common areas Degree 2 | milestone | 0d | 2013-12-27 A | 2013-12-27 A |  | 100% | 2016-09-30 | 2016-09-30 |  |  | finish on or before 2013-12-29 | W11 7 day no hols | 01 |
| 822-KD-SDC-4E-1 |  | SM EAP Adit - all rooms and common areas Degree 1 | milestone | 0d | 2014-12-23 A | 2014-12-23 A |  | 100% | 2015-01-02 | 2015-01-02 |  |  |  | W11 7 day no hols | 01 |
| 822-KD-SDC-4A-1 |  | Tunnels from Northern to Southern Limit Degree 1 (revised 14/03/14) | milestone | 0d | 2015-03-01 A | 2015-03-01 A | 822-KD-P-2010 FF | 100% | 2015-11-24 | 2015-11-24 |  |  |  | W11 7 day no hols | 01 |
| 822-KD-SDC-4F-1 |  | PH Ventilation Adit - Common areas Degree 1 | milestone | 0d | 2015-04-09 A | 2015-04-09 A |  | 100% | 2015-05-01 | 2015-05-01 |  |  |  | W11 7 day no hols | 01 |
| 822-KD-SDC-4H-1 |  | PH Vehicular Access Adit - All rooms Degree 1 | milestone | 0d | 2015-04-30 A | 2015-04-30 A | 822-KD-P-1150 FF | 100% | 2015-06-14 | 2015-06-14 |  |  |  | W11 7 day no hols | 01 |
| 822-KD-SDC-4G-1 |  | PH Vehicular Access Adit - Common areas Degree 1 | milestone | 0d | 2015-05-01 A | 2015-05-01 A | 822-KD-P-1150 FF | 100% | 2015-12-06 | 2015-12-06 |  |  |  | W11 7 day no hols | 01 |
| 822-KD-SDC-4F-2 |  | PH Ventilation Adit - Common areas Degree 2 | milestone | 0d | 2015-11-30 A | 2015-11-30 A | 822-PH-VA-FW-1010 FF | 100% |  |  |  |  |  | W11 7 day no hols | 01 |
| 822-KD-SDC-4H-2 |  | PH Vehicular Access Adit - All rooms Degree 2 | milestone | 0d | 2015-11-30 A | 2015-11-30 A | 822-PH-VAA-FW-1020 FF | 100% |  |  |  |  |  | W11 7 day no hols | 01 |
| 822-KD-SDC-4B-1 |  | SM Vent Building and Shaft - all rooms and common areas Degree 1 | milestone | 0d | 2016-01-22 A | 2016-01-22 A | 822-KD-P-1190 FF, 822-SM-VB5-FW-1140 FF, 822-KD-IPS-G03 FF | 100% | 2016-02-05 | 2016-02-05 |  |  |  | W11 7 day no hols | 01 |
| 822-KD-SDC-4G-2 |  | PH Vehicular Access Adit - Common areas Degree 2 | milestone | 0d | 2016-01-30 A | 2016-01-30 A | 822-PH-VAA-FW-1000 FF | 100% | 2015-11-30 | 2015-11-30 |  |  |  | W11 7 day no hols | 01 |
| 822-KD-SDC-4E-2 |  | SM EAP Adit - all rooms and common areas Degree 2 | milestone | 0d | 2016-07-09 A | 2016-07-09 A | 822-SM-EAP-MP-1030D | 100% | 2015-08-01 | 2015-08-01 |  |  |  | W11 7 day no hols | 01 |
| 822-KD-SDC-4F-3 |  | PH Ventilation Adit - Common areas Degree 3 | milestone | 0d | 2016-08-16 A | 2016-08-16 A | 822-PH-VA-FW-1030 FF, 822-PH-VA-FW-M-1030A, 822-PH-VA-FW-M-1030B | 100% | 2017-02-01 | 2017-02-01 |  |  | finish on or before 2014-03-02 | W11 7 day no hols | 01 |
| 822-KD-SDC-4C-3 |  | PH Vent Building - all rooms and common areas Degree 3 | milestone | 0d | 2017-05-31 | 2017-05-31 | 822-PH-VB4-IW-1020, 822-PH-VB4-IW-1040 |  |  |  | -1182d | 214d | finish on or before 2014-03-02 | W11 7 day no hols | 01 |
| 822-KD-SDC-4E-3 |  | SM EAP Adit - all rooms and common areas Degree 3 | milestone | 0d | 2017-05-31 | 2017-05-31 | 822-SM-EAP-FW-1030 FF, 822-SM-EAP-MP-1030J |  |  |  | -1182d | 214d | finish on or before 2014-03-02 | W11 7 day no hols | 01 |
| 822-KD-SDC-4G-3 |  | PH Vehicular Access Adit - Common areas Degree 3 | milestone | 0d | 2017-05-31 | 2017-05-31 | 822-PH-VAA-FW-1040B, 822-PH-VAA-FW-1040H, 822-PH-VAA-FW-1010, 822-PH-VAA-FW-1040A, 822-PH-VAA-FW-1040G, 822-PH-VAA-FW-1040F, 822-PH-VAA-FW-1060, 822-PH-VAA-FW-1040 |  |  |  | -1147d | 0d | finish on or before 2014-04-06 | W11 7 day no hols | 01 |
| 822-KD-SDC-4H-3 |  | PH Vehicular Access Adit - All rooms Degree 3 | milestone | 0d | 2017-05-31 | 2017-05-31 | 822-PH-VAA-FW-1040B, 822-PH-VAA-FW-1040H, 822-PH-VAA-FW-1040G, 822-PH-VAA-FW-1040F, 822-PH-VAA-FW-1060, 822-PH-VAA-FW-1040 |  |  |  | -1091d | 0d | finish on or before 2014-06-01 | W11 7 day no hols | 01 |
| 822-KD-SDC-4B-2 |  | SM Vent Building and Shaft - all rooms and common areas Degree 2 | milestone | 0d | 2017-06-09 | 2017-06-09 | 822-SM-VB5-FW-1150 FF, 822-SM-VB5-EW-1150 FF, 822-SM-VB5-MP-1130J3 FF, 822-SM-VB5-MP-1170Y3 FF, 822-SM-VB5-MP-1200E3 FF, 822-SM-VB5-MP-1250L5 FF, 822-SM-VB5-MP-1170R4 FF, 822-SM-TTM-MP-1255G3 FF, 822-SM-TTM-MP-1355D6 FF, 822-SM-TTM-MP-1430C FF, 822-SM-TTM-MP-1450B FF |  |  |  | -1344d | 205d | finish on or before 2013-09-29 | W11 7 day no hols | 01 |
| 822-KD-SDC-4B-3 |  | SM Vent Building and Shaft - all rooms and common areas Degree 3 | milestone | 0d | 2017-06-21 | 2017-06-21 | 822-SM-S-FW-1010 FF, 822-SM-EAP-MP-1030J, 822-SM-EAP-MP-1030H, 822-SM-VB5-MP-1200H4 FF, 822-SM-V5-FW-M-1170H FF, 822-SM-S-L6-MP-1130 FF, 822-SM-V5-FW-M-1170N, 822-SM-S-L4-MP-1090, 822-SM-V5-FW-M-1170P, 822-SM-S-L4-MP-1120, 822-SM-VB5-EW-1300, 822-SM-VB5-EW-1070, 822-SM-V5-FW-M-1170M FF |  |  |  | -1293d | 193d | finish on or before 2013-12-01 | W11 7 day no hols | 01 |

Notes:
- 822-KD-SDC-4C-1: Notes: ? Per letter Ref.: / 822-COR-LCA-CCM-001720, dated 21 September 2013.
- 822-KD-SDC-4A-1: Notes: ? Dec6 - Date correction revised from 2 / March 2015 to 1 March 2015

| ID | WBS | Activity | Type | Duration | Start | Finish | Predecessors | Complete | Planned start | Planned finish | Total float | Constraint | Calendar | Contract Key Dates |
| --- | --- | --- | --- | --- | --- | --- | --- | --- | --- | --- | --- | --- | --- | --- |
|  | 2 | **IPS Milestones** |  |  | 2015-04-30 | 2017-06-30 |  |  |  |  |  |  |  |  |
|  | 1 | **Cost Centre A - Preliminaries** |  |  | 2017-04-30 | 2017-06-30 |  |  |  |  |  |  |  |  |
| 822-KD-IPS-A13 |  | Approval of draft O&M Manuals and draft as-built drawings for the Whole of the Works | milestone | 0d | 2017-04-30 A | 2017-04-30 A | 822-D-AB-1010 FF, 822-D-AB-1020 FF, 822-D-OM-1010 FF, 822-D-OM-1020 FF | 100% |  |  |  |  | W11 7 day no hols | 01 |
| 822-KD-IPS-A14 |  | Approval of O&M Manuals and as-built drawings for the Whole of the Works | milestone | 0d | 2017-06-30 | 2017-06-30 | 822-D-OM-1030 FF, 822-D-AB-1090 FF |  |  |  | 184d |  | W11 7 day no hols | 01 |
|  | 2 | **Cost Centre B - PH to SY Tunnels** |  |  |  |  |  |  |  |  |  |  |  |  |
|  | 3 | **Cost Centre C - Adits Connecting VB4 and Track Alignment** |  |  | 2015-04-30 | 2017-04-30 |  |  |  |  |  |  |  |  |
| 822-KD-IPS-C0627 |  | Degree 1 Completion for all rooms in PHVAA | milestone | 0d | 2015-04-30 A | 2015-04-30 A | 822-KD-P-1150 FF | 100% | 2015-12-06 | 2015-12-06 |  |  | W11 7 day no hols | 01 |
| 822-KD-IPS-C06 |  | Degree 1 Completion of PHVA & PHVAA (Common Areas) | milestone | 0d | 2015-07-24 A | 2015-07-24 A | 822-KD-P-1150 FF | 100% | 2015-12-06 | 2015-12-06 |  |  | W11 7 day no hols | 01 |
| 822-KD-IPS-C08A |  | Substantial Completion of PHVAA | milestone | 0d | 2017-04-30 A | 2017-04-30 A | 822-KD-SDC-4G-3 FF, 822-KD-SDC-4H-3 FF | 100% |  |  |  |  | W11 7 day no hols | 01 |
|  | 4 | **Cost Centre D - VB4 and Associated Works** |  |  | 2016-08-31 | 2016-08-31 |  |  |  |  |  |  |  |  |
| 822-KD-IPS-D07A |  | All works substantially complete | milestone | 0d | 2016-08-31 A | 2016-08-31 A | 822-PH-VB4-EW-1070 FF, 822-PH-VB4-EW-1100 FF, 822-PH-VB4-EW-1150 FF, 822-PH-VB4-EW-1160 FF, 822-PH-VB4-EW-1220 FF, 822-PH-VB4-FW-2070 FF, 822-PH-VB4-FW-2110 FF, 822-PH-VB4-EW-1230H FF-0.11d, 822-PH-VB4-FW-3130 FF, 822-PH-VB4-FW-3140 FF | 100% | 2016-11-06 | 2016-11-06 |  |  | W11 7 day no hols | 01 |
|  | 5 | **Cost Centre E - Adits Connecting SM Shaft and Track Alignment** |  |  | 2017-04-30 | 2017-04-30 |  |  |  |  |  |  |  |  |
| 822-KD-IPS-E07 |  | Substantially complete all works | milestone | 0d | 2017-04-30 A | 2017-04-30 A | 822-SM-EAP-FW-1030 FF, 822-SM-EAP-MP-1030J, 822-SM-EAP-MP-1030H | 100% | 2017-05-21 | 2017-05-21 |  |  | W11 7 day no hols | 01 |
|  | 6 | **Cost Centre F - SM EAP and Vent Shaft** |  |  | 2016-08-30 | 2017-04-30 |  |  |  |  |  |  |  |  |
| 822-KD-IPS-F08 |  | Degree 2 completion of all rooms within Vent Shaft | milestone | 0d | 2016-08-30 A | 2016-08-30 A | 822-SM-VB5-FW-1150 FF, 822-SM-V5-FW-M-1170A | 100% | 2016-09-30 | 2016-09-30 |  |  | W11 7 day no hols | 01 |
| 822-KD-IPS-F10 |  | All permanent doors installed | milestone | 0d | 2017-01-27 A | 2017-01-27 A | 822-SM-S-FW-1010, 822-SM-S-L7-MP-1120, 822-SM-S-L6-MP-1120, 822-SM-S-L4-MP-1100, 822-SM-EAP-MP-1030H, 822-SM-V5-FW-M-1170O | 100% | 2017-03-15 | 2017-03-15 |  |  | W11 7 day no hols | 01 |
| 822-KD-IPS-F09 |  | Degree 3 completion of all rooms within Vent Shaft | milestone | 0d | 2017-03-31 A | 2017-03-31 A | 822-SM-S-FW-1010 FF, 822-SM-S-L4-MP-1110, 822-SM-EAP-MP-1030J, 822-SM-S-L4-MP-1120 | 100% | 2017-05-21 | 2017-05-21 |  |  | W11 7 day no hols | 01 |
| 822-KD-IPS-F0697 |  | Degree 3 completion for all rooms in EAP and complete shaft structure | milestone | 0d | 2017-04-30 A | 2017-04-30 A | 822-SM-EAP-FW-1030 FF, 822-SM-EAP-MP-1030J | 100% | 2017-05-21 | 2017-05-21 |  |  | W11 7 day no hols | 01 |
| 822-KD-IPS-F11A |  | All works substantially complete | milestone | 0d | 2017-04-30 A | 2017-04-30 A | 822-SM-S-FW-1010 FF, 822-SM-EAP-MP-1030J, 822-SM-S-L6-MP-1130 FF-1d | 100% | 2017-05-21 | 2017-05-21 |  |  | W11 7 day no hols | 01 |
|  | 7 | **Cost Centre G - VB5 and Associated Works** |  |  | 2015-12-06 | 2017-04-30 |  |  |  |  |  |  |  |  |
| 822-KD-IPS-G0112 |  | Complete structure of SMVB GL B-F Level U1 to U2 | milestone | 0d | 2015-12-06 A | 2015-12-06 A | 822-SM-VB5-L1D-2010 FF | 100% |  |  |  |  | W11 7 day no hols | 01 |
| 822-KD-IPS-G0122 |  | Complete structure of SMVB GL C-F Level U2 to Roof | milestone | 0d | 2016-01-09 A | 2016-01-09 A | 822-SM-VB5-RC-2010 | 100% | 2015-12-26 | 2015-12-26 |  |  | W11 7 day no hols | 01 |
| 822-KD-IPS-G02 |  | Complete structure of SM Vent Building up to roof level | milestone | 0d | 2016-01-22 A | 2016-01-22 A | 822-SM-VB5-RC-2010, 822-SM-VB5-FW-3020 | 100% | 2016-02-05 | 2016-02-05 |  |  | W11 7 day no hols | 01 |
| 822-KD-IPS-G03 |  | Degree 1 completion for all rooms in SM Vent Building | milestone | 0d | 2016-01-22 A | 2016-01-22 A | 822-SM-VB5-FW-1140 FF, 822-SM-VB5-FW-3020 | 100% | 2016-02-05 | 2016-02-05 |  |  | W11 7 day no hols | 01 |
| 822-KD-IPS-G04 |  | Degree 2 completion for all rooms in SM Vent Building | milestone | 0d | 2016-08-31 A | 2016-08-31 A | 822-SM-VB5-FW-1150 FF, 822-SM-V5-L1-MP-2040 FF | 100% | 2016-10-21 | 2016-10-21 |  | finish on or after 2016-08-19 | W11 7 day no hols | 01 |
| 822-KD-IPS-G05 |  | Degree 3 completion for all rooms in SM Vent Building | milestone | 0d | 2017-03-31 A | 2017-03-31 A | 822-SM-VB5-FW-1160 FF, 822-SM-V5-FW-M-1170H FF, 822-SM-VB5-EW-1050 FF, 822-SM-VB5-MP-1200H4 FF, 822-SM-V5-FW-M-1170N, 822-SM-V5-L1-MP-2060 FF, 822-SM-VB5-FW-2030 FF, 822-SM-VB5-L1D-2030 FF, 822-SM-VB5-EW-1300 FF | 100% | 2017-04-30 | 2017-04-30 |  |  | W11 7 day no hols | 01 |
| 822-KD-IPS-G06 |  | All permanent doors installed | milestone | 0d | 2017-04-30 A | 2017-04-30 A | 822-SM-V5-FW-M-1170D FS+6d, 822-SM-V5-FW-M-1170S FS+6d, 822-SM-V5-FW-M-1170O, 822-SM-S-L4-MP-1100 | 100% |  |  |  |  | W11 7 day no hols | 01 |
| 822-KD-IPS-G07A |  | All works substantially complete | milestone | 0d | 2017-04-30 A | 2017-04-30 A | 822-SM-V5-FW-M-1170F, 822-SM-V5-L1-MP-2040, 822-SM-VB5-EW-1050, 822-SM-V5-FW-M-1170H, 822-SM-VB5-MP-1250K3, 822-SM-VB5-MP-1200H4, 822-SM-V5-L1-MP-2050, 822-SM-V5-FW-M-1170R, 822-SM-V5-L1-MP-2060, 822-SM-VB5-FW-2030, 822-SM-VB5-L1D-2030, 822-SM-VB5-EW-1300, 822-SM-V5-FW-M-1170T, 822-SM-S-L4-MP-1120 | 100% |  |  |  |  | W11 7 day no hols | 01 |

Notes:
- 822-KD-IPS-D07A: Notes: ? / Sep 2016 - completion date taken from CM meeting no. 78 appendix / 1
- 822-KD-IPS-F08: Notes: ? / Sep 2016 - completion date taken from CM meeting no. 78 appendix / 1
- 822-KD-IPS-G04: Notes: ? / Sep 2016 - completion date taken from CM meeting no. 78 appendix / 1

| ID | WBS | Activity | Type | Duration | Start | Finish | Predecessors | Complete | Planned start | Planned finish | Total float | Free float | Calendar | Contract Key Dates |
| --- | --- | --- | --- | --- | --- | --- | --- | --- | --- | --- | --- | --- | --- | --- |
|  | 8 | **Cost Centre H - Associated Works** |  |  |  |  |  |  |  |  |  |  |  |  |
|  | 3 | **Access Dates for DCs** |  |  | 2015-10-31 | 2016-02-06 |  |  |  |  |  |  |  |  |
| 822-KD-DC-1330 |  | Provide DC with access to SMS L1 to G/F (GL D-F) | milestone | 0d | 2015-10-31 A | 2015-10-31 A |  | 100% |  |  |  |  | W11 7 day no hols |  |
| 822-KD-DC-1340 |  | Provide DC with access to SMS U1 to Roof (GL B-F) | milestone | 0d | 2015-11-21 A | 2015-11-21 A | 822-SM-VB5-FW-1140 | 100% | 2016-02-06 | 2016-02-06 |  |  | W11 7 day no hols |  |
| 822-KD-DC-1250 |  | Provide DC with full access to VB5 | milestone | 0d | 2016-02-06 A | 2016-02-06 A | 822-KD-P-1190, 822-SM-VB5-FW-3020, 822-SM-VB5-FW-2120 | 100% | 2016-04-01 | 2016-04-01 |  |  | W11 7 day no hols |  |
|  | 5 | **Access Dates for Work Areas** |  |  | 2015-11-27 | 2017-12-31 |  |  |  |  |  |  |  |  |
|  | 1 | **Works Area Possession Dates** |  |  |  |  |  |  |  |  |  |  |  |  |
|  | 1 | **Pat Heung** |  |  |  |  |  |  |  |  |  |  |  |  |
|  | 2 | **Shing Mun** |  |  |  |  |  |  |  |  |  |  |  |  |
|  | 3 | **Shek Yam** |  |  |  |  |  |  |  |  |  |  |  |  |
|  | 5 | **Tai Shu Ha** |  |  |  |  |  |  |  |  |  |  |  |  |
|  | 6 | **So Kwan Wat** |  |  |  |  |  |  |  |  |  |  |  |  |
|  | 4 | **Kwai Fong** |  |  |  |  |  |  |  |  |  |  |  |  |
|  | 7 | **Yam O Barging Point** |  |  |  |  |  |  |  |  |  |  |  |  |
|  | 2 | **Works Area Vacate Dates** |  |  | 2015-11-27 | 2017-12-31 |  |  |  |  |  |  |  |  |
|  | 1 | **Pat Heung** |  |  | 2017-01-23 | 2017-06-30 |  |  |  |  |  |  |  |  |
| 822-KD-A-3290 |  | Vacate Area 6.4 (Kam Sheung Rd - by SLG) | milestone | 0d | 2017-01-23 A | 2017-01-23 A | 822-SE-PH-1000 FF, 822-PH-VB4-FW-3090 FF | 100% | 2017-03-24 | 2017-03-24 |  |  | W11 7 day no hols | 01 |
| 822-KD-A-3380 |  | Vacate Area 6.1 (Pat Heung) | milestone | 0d | 2017-06-30 | 2017-06-30 | 822-SE-PH-1000 FF, 822-PH-VB4-FW-3090 FF, 822-PH-VB4-FW-2050, 822-PH-VB4-FW-2120 FF, 822-MT-CS-C-MP-1160, 822-PH-VAA-FW-1050 FF, 822-PH-VB4-FW-2200 FF, 822-KD-P-1175, 822-PH-VB4-FW-2205 |  |  |  | 183d | 184d | W11 7 day no hols | 01 |
| 822-KD-A-3390 |  | 2nd Vacate Area 6.2 (Pat Heung) | milestone | 0d | 2017-06-30 | 2017-06-30 | 822-SE-PH-1000 FF |  |  |  | 183d | 184d | W11 7 day no hols | 01 |
| 822-KD-A-3400 |  | Vacate Area 6.3 (Pat Heung) | milestone | 0d | 2017-06-30 | 2017-06-30 | 822-SE-PH-1000 FF |  |  |  | 183d | 184d | W11 7 day no hols | 01 |
| 822-KD-A-4880 |  | Vacate Area 6.1A (Pat Heung) | milestone | 0d | 2017-06-30 | 2017-06-30 | 822-SE-PH-1000 FF, 822-KD-A-3290 FF |  |  |  | 183d | 184d | W11 7 day no hols | 01 |
|  | 2 | **Shing Mun** |  |  | 2017-10-12 | 2017-10-12 |  |  |  |  |  |  |  |  |
| 822-KD-A-3420 |  | Vacate Area 7.1 (Shing Mun) | milestone | 0d | 2017-10-12 | 2017-10-12 | 822-SE-SM-1000 FF, 822-KD-A-4205 FF |  |  |  | 79d | 80d | W11 7 day no hols | 01 |
| 822-KD-A-3430 |  | Vacate Area 7.2 (Shing Mun) | milestone | 0d | 2017-10-12 | 2017-10-12 | 822-SE-SM-1000 FF |  |  |  | 79d | 80d | W11 7 day no hols | 01 |
| 822-KD-A-4205 |  | Vacate Area 7.3 (Part - Shing Mun Bus Terminus) | milestone | 0d | 2017-10-12 | 2017-10-12 | 822-SE-SM-1000 FF |  |  |  | 79d | 0d | W11 7 day no hols | 01 |

| ID | WBS | Activity | Type | Duration | Start | Finish | Predecessors | Complete | Remaining | Planned start | Planned finish | Total float | Free float | Constraint | Calendar | Contract Key Dates |
| --- | --- | --- | --- | --- | --- | --- | --- | --- | --- | --- | --- | --- | --- | --- | --- | --- |
|  | 3 | **Shek Yam** |  |  | 2016-12-12 | 2016-12-12 |  |  |  |  |  |  |  |  |  |  |
| 822-KD-A-3440 |  | 2nd Vacate Area 8.2 (Shek Yam) | milestone | 0d | 2016-12-12 A | 2016-12-12 A | 822-SE-SY-MP-1000L FF | 100% |  | 2017-04-30 | 2017-04-30 |  |  |  | W11 7 day no hols | 01 |
| 822-KD-A-3450 |  | Vacate Area 8.3 (Shek Yam) | milestone | 0d | 2016-12-12 A | 2016-12-12 A | 822-SE-SY-MP-1000L FF, 822-MT-CS-C-MP-1160 | 100% |  | 2017-04-30 | 2017-04-30 |  |  |  | W11 7 day no hols | 01 |
|  | 6 | **So Kwan Wat** |  |  | 2017-12-31 | 2017-12-31 |  |  |  |  |  |  |  |  |  |  |
| 822-KD-A-3410 |  | Vacate Area 6.8 (So Kwan Wat) -EI 97 (Return Date extended to 30 Sep 15) (MTR Letter: Extend to 31 Dec 17) | milestone | 0d | 2017-12-31 | 2017-12-31 | 822-SE-KW-1000 FF, 822-SE-KW-MP-1000B FF |  |  |  |  | 0d | 1d | finish on 2017-12-31 | W11 7 day no hols | 01 |
|  | 5 | **Tai Shu Ha** |  |  | 2015-11-27 | 2015-11-27 |  |  |  |  |  |  |  |  |  |  |
| 822-KD-A-3330 |  | Vacate Area 6.11 (Tai Shu Ha) - EI 92 (after 824 blasting or 30 Jun 15) | milestone | 0d | 2015-11-27 A | 2015-11-27 A | 822-SE-TSH-1000 FF | 100% |  | 2016-02-01 | 2016-02-01 |  |  | finish on 2014-12-28 | W11 7 day no hols | 01 |
| 822-KD-A-3340 |  | Vacate Area 6.12 (Tai Shu Ha) - EI 92 (after 824 blasting or 30 Jun 15) | milestone | 0d | 2015-11-27 A | 2015-11-27 A | 822-SE-TSH-1000 FF | 100% |  | 2016-02-01 | 2016-02-01 |  |  | finish on 2014-12-28 | W11 7 day no hols | 01 |
|  | 4 | **Kwai Fong** |  |  | 2017-10-27 | 2017-10-27 |  |  |  |  |  |  |  |  |  |  |
| 822-KD-A-3460 |  | Vacate Area 8.5 (Kwai Fong Compound) | milestone | 0d | 2017-10-27 | 2017-10-27 | 822-SE-KC-1000 FF |  |  |  |  | 64d | 65d |  | W11 7 day no hols | 01 |
|  | 7 | **Yam O Barging Point** |  |  |  |  |  |  |  |  |  |  |  |  |  |  |
|  | 6 | **Schedule Start From** |  |  |  |  |  |  |  |  |  |  |  |  |  |  |
|  | 7 | **Planned Completion Dates** |  |  | 2015-05-01 | 2018-01-02 |  |  |  |  |  |  |  |  |  |  |
| 822-KD-P-1150 |  | Planned completion of PHVAA | milestone | 0d | 2015-05-01 A | 2015-05-01 A | 822-PH-VAA-IS-1100 FF | 100% |  | 2015-12-05 | 2015-12-05 |  |  |  |  |  |
| 822-KD-P-2010 |  | Planned closure of Main Tunnel lining at SY Construction Adit Junction | milestone | 0d | 2015-12-09 A | 2015-12-09 A | 822-MT-CS-C-1080 FF, 822-MT-CS-C-1090 | 100% |  | 2015-11-23 | 2015-11-23 |  |  |  |  |  |
| 822-KD-P-1190 |  | Planned completion of VB5 (internal works) | milestone | 0d | 2016-01-22 A | 2016-01-22 A | 822-SM-VB5-FW-1140 FF, 822-SM-V5-FW-M-1170P | 100% |  | 2016-02-05 | 2016-02-05 |  |  |  |  |  |
| 822-KD-P-1170 |  | Planned completion of VB4 (external works) | milestone | 0d | 2017-04-30 A | 2017-04-30 A | 822-PH-VB4-EW-1070 FF, 822-PH-VB4-EW-1220 FF, 822-PH-VB4-EW-1160 FF, 822-PH-VB4-EW-1150 FF, 822-PH-VB4-EW-1100 FF, 822-PH-VB4-EW-1230H, 822-PH-VB4-FW-2070 FF, 822-PH-VB4-FW-2110 FF, 822-PH-VB4-FW-3130 FF, 822-PH-VB4-FW-3140 FF | 100% |  | 2017-05-20 | 2017-05-20 |  |  |  |  |  |
| 822-KD-P-1180 |  | Planned completion of Main Tunnel Remdials | milestone | 0d | 2017-05-31 | 2017-05-31 | 822-MT-CS-C-MP-1180 FF |  |  |  |  | 157d | 0d |  |  |  |
| 822-KD-P-1175 |  | Planned completion of Pat Heung | milestone | 0d | 2017-06-29 | 2017-06-29 | 822-PH-VB4-EW-1230 FF, 822-SE-PH-1000 FF |  |  |  |  | 156.88d | 0d |  |  |  |
| 822-KD-P-1195 |  | Planned completion of VB5 (external works) | milestone | 0d | 2017-09-13 | 2017-09-13 | 822-SM-VB5-EW-1070 FF, 822-SM-VB5-EW-1230 FF, 822-SM-TTM-MP-1450B, 822-SM-VB5-FW-1180 FF, 822-SM-VB5-BS-0100 FF, 822-SM-TTM-MP-EIXX3, 822-SM-TTM-MP-EIXX2, 822-SM-VB5-FW-1300, 822-SM-VB5-FW-1310, 822-SM-VB5-FW-1320 |  |  |  |  | 13d | 0d |  |  |  |
| 822-KD-P-2000 |  | Planned Completion of the Whole of the Works | milestone | 0d | 2018-01-02 | 2018-01-02 | 822-SE-KC-1000 FF, 822-SE-SM-1000 FF, 822-SE-PH-1000 FF, 822-SE-TSH-1000 FF, 822-SE-KW-1000 FF, 822-D-QR-1040 FF, 822-D-AB-1090 FF, 822-D-OM-1030 FF, 822-MT-CS-C-1080 FF, 822-KD-A-3380 FF, 822-KD-A-3390 FF, 822-KD-A-3400 FF, 822-KD-A-4880 FF, 822-KD-A-3420 FF, 822-KD-A-3430 FF, 822-KD-A-3440 FF, 822-KD-A-3450 FF, 822-KD-A-3410 FF, 822-KD-A-3330 FF, 822-KD-A-3340 FF, 822-KD-A-3460 FF, 822-SM-TTM-MP-1450B, 822-SE-SY-MP-1000L FF, 822-SM-VB5-MP-1310 FF, 822-SM-VB5-MP-1330, 822-SM-VB5-MP-1320, 822-SM-V5-FW-M-1170M FF, 822-SE-823-MP-1010, 822-SM-VB5-BS-0100, 822-D-AB-1070, 822-D-AB-1040, 822-D-AB-1080, 822-SM-TTM-MP-EIXX3, 822-SM-TTM-MP-EIXX2 |  |  |  |  | 0d |  |  |  |  |
|  | 2 | **Deliverables** |  |  | 2015-04-01 | 2017-10-11 |  |  |  |  |  |  |  |  |  |  |
|  | 1 | **Quality Records** |  |  | 2015-09-01 | 2017-10-11 |  |  |  |  |  |  |  |  |  |  |
| 822-D-QR-1000 |  | Collate and submit quality records for Main Tunnel Works |  | 48d | 2015-09-01 A | 2017-03-15 A | 822-KD-P-1180 FF | 100% |  | 2015-09-01 | 2015-10-29 |  |  |  |  |  |
| 822-D-QR-1030 |  | Collate and submit quality records for SY Construction Adit |  | 48d | 2015-09-01 A | 2015-12-18 A |  | 100% |  | 2015-09-01 | 2015-10-29 |  |  |  |  |  |
| 822-D-QR-1020 |  | Collate and submit quality records for VB4 + PHVA + PHVAA |  | 48d | 2017-01-03 A | 2017-02-28 A | 822-KD-P-1170 FS-24d, 822-KD-P-1150 FS-24d | 100% |  | 2017-02-01 | 2017-03-28 |  |  |  |  |  |
| 822-D-QR-1010 |  | Collate and submit quality records for SM Shaft and VB5 |  | 48d | 2017-02-15 A | 2017-10-11 | 822-KD-P-1190 FS-24d, 822-KD-P-1195 | 60% | 24d | 2017-09-04 | 2017-10-28 | 68d | 0d |  |  |  |
| 822-D-QR-1040 |  | MTR acceptance of quality records |  | 48d | 2017-03-01 A | 2017-09-29 | 822-D-QR-1030, 822-D-QR-1020 FS-36d, 822-D-QR-1010 FS-36d, 822-D-QR-1000 |  | 26d | 2017-09-18 | 2017-11-11 | 78d |  |  |  |  |

| ID | WBS | Activity | Type | Duration | Start | Finish | Predecessors | Complete | Remaining | Planned start | Planned finish | Total float | Free float | Constraint |
| --- | --- | --- | --- | --- | --- | --- | --- | --- | --- | --- | --- | --- | --- | --- |
|  | 2 | **As-Built Drawings** |  |  | 2015-04-01 | 2017-10-11 |  |  |  |  |  |  |  |  |
| 822-D-AB-1060 |  | Prepare and submit as-built drawings for VB5 |  | 48d | 2015-04-01 A | 2015-04-30 A | 822-KD-P-1190 | 100% |  | 2016-02-05 | 2016-04-01 |  |  |  |
| 822-D-AB-1010 |  | Prepare and submit as-built drawings for PHVA |  | 48d | 2015-09-09 A | 2015-12-04 A |  | 100% |  | 2015-09-01 | 2015-10-29 |  |  |  |
| 822-D-AB-1020 |  | Prepare and submit as-built drawings for PHVAA |  | 48d | 2015-09-09 A | 2015-12-04 A | 822-KD-P-1150 FS-24d | 100% |  | 2015-09-09 | 2015-11-06 |  |  |  |
| 822-D-AB-1050 |  | Prepare and submit as-built drawings for EAP & SM Shaft |  | 48d | 2015-11-17 A | 2017-02-07 A |  | 100% |  | 2016-02-01 | 2016-03-26 |  |  |  |
| 822-D-AB-1040 |  | Prepare and submit as-built drawings for VB4 (Outstanding Works) |  | 48d | 2016-02-26 A | 2017-02-07 A | 822-KD-P-1170 FS-24d | 100% |  | 2016-11-29 | 2017-01-24 |  |  |  |
| 822-D-AB-1090 |  | MTR acceptance of as-built drawings |  | 48d | 2016-03-30 A | 2017-06-27 | 822-D-AB-1010, 822-D-AB-1020 FS-24d, 822-D-AB-1050, 822-D-AB-1060 | 50% | 24d | 2016-08-13 | 2016-10-07 | 159d | 2d |  |
| 822-D-AB-1070 |  | Prepare and submit as-built drawings for VB4 landscaping (Outstanding Works) |  | 48d | 2017-01-02 A | 2017-06-27 | 822-KD-P-1170 FS-24d | 80% | 24d | 2017-04-01 | 2017-05-26 | 159d |  |  |
| 822-D-AB-1080 |  | Prepare and submit as-built drawings for VB5 landscaping (Outstanding Works) |  | 48d | 2017-01-02 A | 2017-10-11 | 822-KD-P-1195 | 80% | 24d | 2017-09-04 | 2017-10-28 | 68d |  |  |
|  | 3 | **O&M Manuals** |  |  | 2015-08-31 | 2017-06-29 |  |  |  |  |  |  |  |  |
| 822-D-OM-1000 |  | Prepare and submit draft O&M Manuals |  | 60d | 2015-08-31 A | 2015-11-11 A |  | 100% |  | 2015-10-31 | 2016-01-12 |  |  |  |
| 822-D-OM-1020 |  | Incorporate comments and submit O&M Manuals |  | 24d | 2015-11-11 A | 2017-03-28 A | 822-D-OM-1010 | 100% |  | 2016-02-02 | 2016-02-29 |  |  |  |
| 822-D-OM-1010 |  | MTR review and comment |  | 48d | 2015-11-12 A | 2016-01-06 A | 822-D-OM-1000 | 100% |  | 2016-01-13 | 2016-03-08 |  |  |  |
| 822-D-OM-1030 |  | MTR approval of O&M Manuals |  | 48d | 2017-01-02 A | 2017-06-29 | 822-D-OM-1020 | 80% | 26d | 2017-04-01 | 2017-05-26 | 157d | 0d |  |
|  | 3 | **Site Establishment** |  |  | 2015-10-31 | 2017-10-26 |  |  |  |  |  |  |  |  |
|  | 7 | **Yam O Barging Point** |  |  |  |  |  |  |  |  |  |  |  |  |
|  | 4 | **Tai Shu Ha Magazine** |  |  | 2015-10-31 | 2015-11-27 |  |  |  |  |  |  |  |  |
| 822-SE-TSH-1000 |  | Clear and reinstate Tai Shu Ha Magaziine site - EI 92 (after 824 blasting or 30 Jun 15) |  | 72d | 2015-10-31 A | 2015-11-27 A |  | 100% |  | 2015-10-31 | 2016-01-26 |  |  | as late as possible |
|  | 5 | **So Kwan Wat Magazine** |  |  | 2016-01-30 | 2017-06-13 |  |  |  |  |  |  |  |  |
| 822-SE-KW-1000 |  | Clear and reinstate So Kwan Wat Magazine site - EI 97 (Return Date extended to 30 Sep 15) |  | 72d | 2016-01-30 A | 2017-05-25 A |  | 100% |  | 2015-10-31 | 2016-01-26 |  |  |  |
| 822-SE-KW-MP-1000A |  | Erect fencing |  | 12d | 2017-05-31 | 2017-06-13 | 822-MT-CS-C-MP-1120 FF |  |  |  |  | 170.88d | 0d |  |
| 822-SE-KW-MP-1000B |  | Site clearance |  | 6d | 2017-06-07 | 2017-06-13 | 822-SE-KW-MP-1000A FF |  |  |  |  | 170.88d | 171d |  |
|  | 3 | **Shek Yam Site** |  |  | 2016-01-02 | 2016-12-12 |  |  |  |  |  |  |  |  |
| 822-SE-SY-2000 |  | Damaged Trees (NoT7948 & T7949) (EI/140) |  | 63d | 2016-01-02 A | 2016-03-15 A |  | 100% |  |  |  |  |  |  |
| 822-SE-SY-1000 |  | Clear and reinstate Shek Yam site | level of effort | 90d | 2016-08-08 A | 2016-12-12 A | 822-SE-SY-MP-1000A SS | 100% |  | 2016-08-15 | 2016-11-26 |  |  |  |
| 822-SE-SY-MP-1000A |  | Remove plant and equipment (EI/157) |  | 12d | 2016-08-08 A | 2016-09-30 A |  | 100% |  | 2016-08-15 | 2016-08-27 |  |  |  |
| 822-SE-SY-MP-1000B |  | Shek Yam Adit - Bulkhead wall (EI/157) |  | 30d | 2016-08-10 A | 2016-09-24 A | 822-SE-SY-MP-1000A SS+9d | 100% |  | 2016-08-25 | 2016-09-28 |  |  |  |
| 822-SE-SY-MP-1000C |  | Remove workshop (EI/157) |  | 18d | 2016-08-15 A | 2016-11-30 A | 822-SE-SY-MP-1000B SS+9d | 100% |  | 2016-08-24 | 2016-09-13 |  |  |  |
| 822-SE-SY-MP-1000D |  | Apply TTA for Dismantle noise barrier at Yau Ma Hom Road (EI/157) |  | 30d | 2016-08-15 A | 2016-08-25 A |  | 100% |  | 2016-08-15 | 2016-09-17 |  |  |  |
| 822-SE-SY-MP-1000F |  | Power-off to main tunnel (31 Aug) | milestone | 0d | 2016-09-05 A | 2016-09-05 A |  | 100% |  | 2016-09-01 | 2016-09-01 |  |  | start on or after 2016-08-31 |
| 822-SE-SY-MP-2000 |  | Remove temporary power and lighting at SY&MT (EI/153) |  | 26d | 2016-09-05 A | 2016-10-29 A | 822-SE-SY-MP-1000G FF+6d | 100% |  | 2016-09-26 | 2016-10-25 |  |  |  |
| 822-SE-SY-MP-1000K |  | Remove deck (EI/157) |  | 30d | 2016-09-20 A | 2016-11-30 A | 822-SE-SY-MP-1000J | 100% |  | 2016-10-06 | 2016-11-09 |  |  |  |
| 822-SE-SY-MP-1000E |  | Remove Noise Barrier (EI/157) |  | 18d | 2016-09-22 A | 2016-10-30 A | 822-SE-SY-MP-1000D | 100% |  | 2016-09-01 | 2016-09-21 |  |  |  |
| 822-SE-SY-MP-1000J |  | Setup temporary works for Deck removal (EI/157) |  | 9d | 2016-09-22 A | 2016-10-31 A | 822-SE-SY-MP-1000C SS+3d, 822-SE-SY-MP-1000E | 100% |  | 2016-09-26 | 2016-10-05 |  |  |  |
| 822-SE-SY-MP-1000G |  | Remove cable and pump inside Shek Yam Adit (EI/157) |  | 15d | 2016-09-26 A | 2016-10-19 A | 822-SE-SY-MP-1000F | 100% |  | 2016-09-01 | 2016-09-17 |  |  |  |
| 822-SE-SY-MP-1000H |  | Remove CLP temporary substation (EI/157) |  | 18d | 2016-11-30 A | 2016-11-30 A | 822-SE-SY-MP-1000F FS+3d, 822-SE-SY-MP-1000J | 100% |  | 2016-10-28 | 2016-11-17 |  |  |  |
| 822-SE-SY-MP-1000L |  | Final clearance |  | 18d | 2016-12-01 A | 2016-12-12 A | 822-SE-SY-MP-1000A, 822-SE-SY-1000 FF, 822-SE-SY-MP-1000K FF+12d, 822-SE-SY-MP-2000, 822-SE-SY-MP-1000H FF+12d | 100% |  | 2016-11-11 | 2016-12-01 |  |  |  |

| ID | WBS | Activity | Duration | Start | Finish | Predecessors | Complete | Remaining | Planned start | Planned finish | Total float | Free float | Constraint |
| --- | --- | --- | --- | --- | --- | --- | --- | --- | --- | --- | --- | --- | --- |
|  | 2 | **Pat Heung Site** |  | 2016-01-04 | 2017-06-29 |  |  |  |  |  |  |  |  |
| 822-SE-PH-1000 |  | Clear and reinstate Pat Heung site | 48d | 2016-01-04 A | 2017-06-29 | 822-KD-P-1170, 822-KD-P-1150, 822-PH-VB4-EW-1230 | 35% | 26d | 2016-12-27 | 2017-02-24 | 156.88d | 0d |  |
|  | 6 | **Shing Mun Site** |  | 2017-09-14 | 2017-10-11 |  |  |  |  |  |  |  |  |
| 822-SE-SM-1000 |  | Clear and reinstate Shing Mun site | 24d | 2017-09-14 | 2017-10-11 | 822-KD-P-1190, 822-KD-P-1195 |  |  |  |  | 67.88d | 0d |  |
|  | 1 | **Kwai Chung Office Site** |  | 2017-09-01 | 2017-10-26 |  |  |  |  |  |  |  |  |
| 822-SE-KC-1000 |  | Clear and reinstate Kwai Chung Office site | 48d | 2017-09-01 | 2017-10-26 | 822-KD-P-1170 FS-24d, 822-KD-P-1190 FS-24d, 822-KD-P-1195 FS-24d |  |  |  |  | 0d |  | start on 2017-09-01 |
|  | 4 | **Main Tunnel** |  | 2015-11-01 | 2017-08-02 |  |  |  |  |  |  |  |  |
|  | 1 | **Type A/B Profile** |  |  |  |  |  |  |  |  |  |  |  |
|  | 1 | **UT Evacuation Walkway** |  |  |  |  |  |  |  |  |  |  |  |
|  | 2 | **UT Side Walkway & Derailment Kerb** |  |  |  |  |  |  |  |  |  |  |  |
|  | 3 | **DT Side Walkway & Derailment Kerb** |  |  |  |  |  |  |  |  |  |  |  |
|  | 4 | **Remedial works** |  |  |  |  |  |  |  |  |  |  |  |
|  | 2 | **Type G Profile** |  |  |  |  |  |  |  |  |  |  |  |
|  | 1 | **Lining** |  |  |  |  |  |  |  |  |  |  |  |
|  | 2 | **Centre Wall** |  |  |  |  |  |  |  |  |  |  |  |
|  | 3 | **Evacuation Walkways** |  |  |  |  |  |  |  |  |  |  |  |
|  | 4 | **Derailment Kerbs** |  |  |  |  |  |  |  |  |  |  |  |
|  | 6 | **Side Access Walkways** |  |  |  |  |  |  |  |  |  |  |  |
|  | 5 | **Remedial works** |  |  |  |  |  |  |  |  |  |  |  |
|  | 7 | **Closure at PH1 Junction** |  |  |  |  |  |  |  |  |  |  |  |
|  | 3 | **Type F Profile** |  |  |  |  |  |  |  |  |  |  |  |
|  | 4 | **Lower Centre Wall** |  |  |  |  |  |  |  |  |  |  |  |
|  | 5 | **OHVD Slab** |  |  |  |  |  |  |  |  |  |  |  |
|  | 1 | **OHVD Centre Wall** |  |  |  |  |  |  |  |  |  |  |  |
|  | 2 | **Evacuation Walkways** |  |  |  |  |  |  |  |  |  |  |  |
|  | 3 | **Side Walkways & Derailment Kerbs** |  |  |  |  |  |  |  |  |  |  |  |
|  | 6 | **Remedial works** |  |  |  |  |  |  |  |  |  |  |  |
|  | 4 | **Type M (North) Profile** |  |  |  |  |  |  |  |  |  |  |  |
|  | 8 | **Lining** |  |  |  |  |  |  |  |  |  |  |  |
|  | 1 | **Invert and Drainage** |  |  |  |  |  |  |  |  |  |  |  |
|  | 2 | **Lower Centre Wall** |  |  |  |  |  |  |  |  |  |  |  |
|  | 6 | **OHVD Slab** |  |  |  |  |  |  |  |  |  |  |  |
|  | 3 | **OHVD Centre Wall** |  |  |  |  |  |  |  |  |  |  |  |
|  | 4 | **Evacuation Walkways** |  |  |  |  |  |  |  |  |  |  |  |
|  | 5 | **Derailment Kerbs** |  |  |  |  |  |  |  |  |  |  |  |
|  | 9 | **Side Access Walkways** |  |  |  |  |  |  |  |  |  |  |  |
|  | 7 | **Temp Bulkhead Removal & Remedial works** |  |  |  |  |  |  |  |  |  |  |  |
|  | 5 | **Type C (North) Profile - from Pat Heung** |  |  |  |  |  |  |  |  |  |  |  |
|  | 6 | **Waterproofing** |  |  |  |  |  |  |  |  |  |  |  |
|  | 5 | **Lining** |  |  |  |  |  |  |  |  |  |  |  |
|  | 1 | **Invert and Drainage** |  |  |  |  |  |  |  |  |  |  |  |
|  | 2 | **Centre Wall** |  |  |  |  |  |  |  |  |  |  |  |
|  | 3 | **Evacuation Walkways** |  |  |  |  |  |  |  |  |  |  |  |
|  | 4 | **Derailment Kerbs** |  |  |  |  |  |  |  |  |  |  |  |
|  | 7 | **Side Access Walkway** |  |  |  |  |  |  |  |  |  |  |  |
|  | 8 | **Remedial works** |  |  |  |  |  |  |  |  |  |  |  |
|  | 14 | **Type C (North) Profile - from Shek Yam** |  |  |  |  |  |  |  |  |  |  |  |
|  | 5 | **Lining** |  |  |  |  |  |  |  |  |  |  |  |
|  | 1 | **Invert and Drainage** |  |  |  |  |  |  |  |  |  |  |  |
|  | 2 | **Centre Wall** |  |  |  |  |  |  |  |  |  |  |  |
|  | 3 | **Evacuation Walkways** |  |  |  |  |  |  |  |  |  |  |  |
|  | 4 | **Derailment Kerbs** |  |  |  |  |  |  |  |  |  |  |  |
|  | 7 | **Side Access Walkway** |  |  |  |  |  |  |  |  |  |  |  |
|  | 8 | **Remedial works** |  |  |  |  |  |  |  |  |  |  |  |
|  | 6 | **Type M (South) Profile** |  |  |  |  |  |  |  |  |  |  |  |
|  | 7 | **Lining** |  |  |  |  |  |  |  |  |  |  |  |
|  | 1 | **Invert and Drainage** |  |  |  |  |  |  |  |  |  |  |  |
|  | 2 | **Lower Centre Wall** |  |  |  |  |  |  |  |  |  |  |  |
|  | 6 | **OHVD Slab** |  |  |  |  |  |  |  |  |  |  |  |
|  | 3 | **OHVD Centre Wall** |  |  |  |  |  |  |  |  |  |  |  |
|  | 4 | **Evacuation Walkways** |  |  |  |  |  |  |  |  |  |  |  |
|  | 5 | **Derailment Kerbs** |  |  |  |  |  |  |  |  |  |  |  |
|  | 8 | **Side Access Walkways** |  |  |  |  |  |  |  |  |  |  |  |
|  | 9 | **Remedial works** |  |  |  |  |  |  |  |  |  |  |  |
|  | 7 | **Type C (South) Profile** |  | 2015-11-01 | 2015-12-22 |  |  |  |  |  |  |  |  |
|  | 1 | **Evacuation Walkways** |  |  |  |  |  |  |  |  |  |  |  |
|  | 2 | **Derailment Kerbs** |  |  |  |  |  |  |  |  |  |  |  |
|  | 5 | **Side Access Walkways** |  |  |  |  |  |  |  |  |  |  |  |
|  | 4 | **Remedial works** |  |  |  |  |  |  |  |  |  |  |  |
|  | 3 | **Closure of Lining after DC Works** |  | 2015-11-01 | 2015-12-22 |  |  |  |  |  |  |  |  |

Notes:
- 822-SE-KC-1000: Notes: ? / April 2017 - Application to extend occupation of Kwai Chung Site office / was granted to End August 2017.

| ID | WBS | Activity | Duration | Start | Finish | Predecessors | Complete | Remaining | Planned start | Planned finish | Total float | Free float | Expected finish | TimeChainage |
| --- | --- | --- | --- | --- | --- | --- | --- | --- | --- | --- | --- | --- | --- | --- |
| 822-MT-CS-C-1050 |  | Mobilize to site (start date specified by Engineer) | 6d | 2015-11-01 A | 2015-11-06 A |  | 100% |  | 2015-10-31 | 2015-11-06 |  |  |  |  |
| 822-MT-CS-C-1060 |  | Close external wall lining at Access Adit (leaving 2mx2m opening) | 12d | 2015-11-03 A | 2015-11-16 A | 822-MT-CS-C-1050 FS-4d | 100% |  |  |  |  |  |  | 01 |
| 822-MT-CS-C-1090 |  | Waterproofing | 1d | 2015-11-17 A | 2015-12-22 A | 822-MT-CS-C-1060 | 100% |  | 2016-02-01 | 2016-02-01 |  |  |  |  |
| 822-MT-CS-C-1070 |  | Complete Remaining side access walkway | 4d | 2015-11-17 A | 2015-11-20 A | 822-MT-CS-C-1060 | 100% |  |  |  |  |  |  | 01 |
| 822-MT-CS-C-1080 |  | Clear site | 4d | 2015-11-19 A | 2015-11-23 A | 822-MT-CS-C-1070 FS-2d | 100% |  |  |  |  |  |  |  |
|  | 15 | **Main Tunnel Clean Out** |  | 2016-06-13 | 2017-08-02 |  |  |  |  |  |  |  |  |  |
| 822-MT-CS-C-MP-1120 |  | Remove temporary water pipeline | 42d | 2016-06-13 A | 2016-09-30 A |  | 100% |  | 2016-07-04 | 2016-08-20 |  |  |  |  |
| 822-MT-CS-C-MP-1190 |  | Remove temporary water pipeline inside the main tunnel (-Superseded-) | 42d | 2016-06-13 A | 2017-06-03 |  |  | 4d | 2016-06-13 | 2016-07-30 | 179d |  |  |  |
| 822-MT-CS-C-MP-1200 |  | Remedial work to fill gaps at dividing wall (completed) | 17d | 2016-06-15 A | 2016-07-04 A | 822-MT-CS-C-MP-1120 SS+2d | 100% |  |  |  |  |  |  |  |
| 822-MT-CS-C-MP-1240 |  | Remove 823 Power cable (-Superseded-) | 77d | 2016-07-01 A | 2017-08-02 |  |  | 55d | 2016-07-01 | 2016-09-28 | 128d |  |  |  |
| 822-SE-823-MP-1010 |  | Remove twin G.I piles inside 823A & 823B area | 72d | 2016-07-04 A | 2017-07-15 | 822-MT-CS-C-MP-1200 | 75% | 24d | 2016-07-04 | 2016-09-24 | 143d | 0d | 2017-07-15 |  |
| 822-MT-CS-C-MP-1110 |  | Remove temporary light, cable, distribution board | 54d | 2016-07-18 A | 2016-10-29 A | 822-SM-V5-FW-M-1170J | 100% |  | 2016-07-18 | 2016-09-17 |  |  |  |  |
| 822-MT-CS-C-MP-1250 |  | Fix tunel duct defects and remove cables (LCAL) (-Superseded-) | 24d | 2016-07-25 A | 2017-06-24 |  |  | 22d | 2016-07-25 | 2016-08-20 | 161d |  |  |  |
| 822-MT-CS-C-MP-1180 |  | Repair Water leakage at Main Tunnel | 27d | 2016-08-04 A | 2016-09-23 A | 822-PH-VAA-FW-1040C, 822-MT-CS-C-MP-1170 FF, 822-MT-CS-C-MP-1150 FF+9d | 100% |  | 2016-08-15 | 2016-09-14 |  |  |  |  |
| 822-MT-CS-C-MP-1230 |  | Lifting eye / Hatch works at PH OHVD and EAP (3 nos.) | 6d | 2016-08-06 A | 2016-10-08 A | 822-PH-VAA-FW-1040D | 100% |  | 2016-08-15 | 2016-08-20 |  |  |  |  |
| 822-MT-CS-C-MP-1150 |  | Remedial works to fill gap at dividing wall | 18d | 2016-08-15 A | 2016-08-30 A | 822-MT-CS-C-MP-1120 FF | 100% |  | 2016-08-15 | 2016-09-03 |  |  |  |  |
| 822-MT-CS-C-MP-1170 |  | Repair Water leakage at OHVD | 6d | 2016-08-15 A | 2016-09-23 A | 822-PH-VA-FW-M-1030A, 822-PH-VA-FW-M-1030B | 100% |  | 2016-08-15 | 2016-08-20 |  |  |  |  |
| 822-MT-CS-C-MP-1130 |  | Remove 2G network cable | 18d | 2016-09-05 A | 2016-09-30 A | 822-MT-CS-C-MP-1110 FF+6d, 822-MT-CS-C-MP-1180, 822-MT-CS-C-MP-1220 | 100% |  | 2016-10-11 | 2016-10-31 |  |  |  |  |
| 822-MT-CS-C-MP-1160 |  | Remove substation (2nos) inside tunnel | 6d | 2016-09-29 A | 2016-11-05 A | 822-MT-CS-C-MP-1130 FF+5d | 100% |  | 2016-10-31 | 2016-11-05 |  |  |  |  |
| 822-MT-CS-C-MP-1220 |  | Steel plate cover up the drain duct in the pit at EAP | 14d | 2016-11-15 A | 2016-11-30 A | 822-PH-VAA-FW-1040B | 100% |  | 2016-10-10 | 2016-10-25 |  |  |  |  |
| 822-MT-CS-C-MP-1140 |  | Repair water leakage at CH 130+000 (-Superseded-) | 18d | 2017-05-31 | 2017-06-20 |  |  |  |  |  | 165d |  |  |  |
|  | 9 | **Type E (North) Nozzle** |  |  |  |  |  |  |  |  |  |  |  |  |
|  | 3 | **Lining - Walls** |  |  |  |  |  |  |  |  |  |  |  |  |
|  | 4 | **Lower Centre Wall** |  |  |  |  |  |  |  |  |  |  |  |  |
|  | 1 | **E(N) OHVD slab (Group 1- CH126+070 to CH 126+063 - 500 th)** |  |  |  |  |  |  |  |  |  |  |  |  |
|  | 2 | **E(N) OHVD slab (Group 2 - CH126+063 to CH 126+052 - 1000 th)** |  |  |  |  |  |  |  |  |  |  |  |  |
|  | 6 | **Crown and Works above OHVD Slab** |  |  |  |  |  |  |  |  |  |  |  |  |
|  | 10 | **PH2A2 Junction** |  |  |  |  |  |  |  |  |  |  |  |  |
|  | 1 | **OHVD Slab Design and Fabrication** |  |  |  |  |  |  |  |  |  |  |  |  |
|  | 2 | **F03 (CH 126+092 - CH 126+101)** |  |  |  |  |  |  |  |  |  |  |  |  |
|  | 1 | **Crown Lining** |  |  |  |  |  |  |  |  |  |  |  |  |
|  | 2 | **OHVD Slab** |  |  |  |  |  |  |  |  |  |  |  |  |
|  | 3 | **F04 (CH126+101 - CH 126+113 12m)** |  |  |  |  |  |  |  |  |  |  |  |  |
|  | 1 | **Wall** |  |  |  |  |  |  |  |  |  |  |  |  |
|  | 2 | **Crown Lining** |  |  |  |  |  |  |  |  |  |  |  |  |
|  | 3 | **OHVD Slab** |  |  |  |  |  |  |  |  |  |  |  |  |
|  | 4 | **J02 (CH 126+113 - CH 126+127)** |  |  |  |  |  |  |  |  |  |  |  |  |
|  | 1 | **1st Wall** |  |  |  |  |  |  |  |  |  |  |  |  |
|  | 2 | **2nd Wall & End Walls** |  |  |  |  |  |  |  |  |  |  |  |  |
|  | 3 | **Crown Lining** |  |  |  |  |  |  |  |  |  |  |  |  |
|  | 4 | **OHVD Slab** |  |  |  |  |  |  |  |  |  |  |  |  |
|  | 5 | **F05A (CH 126+127 - CH 126+133)** |  |  |  |  |  |  |  |  |  |  |  |  |
|  | 1 | **Crown Lining** |  |  |  |  |  |  |  |  |  |  |  |  |
|  | 2 | **OHVD Slab (F05A&B)** |  |  |  |  |  |  |  |  |  |  |  |  |
|  | 11 | **Type E (South) Nozzle** |  |  |  |  |  |  |  |  |  |  |  |  |
|  | 3 | **Lining - Walls** |  |  |  |  |  |  |  |  |  |  |  |  |
|  | 4 | **Lower Centre Wall** |  |  |  |  |  |  |  |  |  |  |  |  |
|  | 1 | **E(S) OHVD Slab (Group 1 - CH126+811 to CH126+818 - 500 th)** |  |  |  |  |  |  |  |  |  |  |  |  |
|  | 2 | **E(S) OHVD Slab (Group 2 - CH126+818 to CH126+829 - 1000 th)** |  |  |  |  |  |  |  |  |  |  |  |  |
|  | 5 | **Crown and Works above OHVD Slab** |  |  |  |  |  |  |  |  |  |  |  |  |
|  | 12 | **Type P Nozzle** |  |  |  |  |  |  |  |  |  |  |  |  |
|  | 1 | **Side Walls** |  |  |  |  |  |  |  |  |  |  |  |  |
|  | 2 | **Centre Dividing Wall** |  |  |  |  |  |  |  |  |  |  |  |  |
|  | 3 | **OHVD Slab** |  |  |  |  |  |  |  |  |  |  |  |  |
|  | 4 | **End Wall & Lining** |  |  |  |  |  |  |  |  |  |  |  |  |
|  | 5 | **Internal Structures** |  |  |  |  |  |  |  |  |  |  |  |  |
|  | 6 | **Removal of Temporary Works** |  |  |  |  |  |  |  |  |  |  |  |  |
|  | 7 | **Walkways and Derailment Kerbs** |  |  |  |  |  |  |  |  |  |  |  |  |
|  | 13 | **SM2A2 Junction** |  |  |  |  |  |  |  |  |  |  |  |  |
|  | 1 | **Junction Lining** |  |  |  |  |  |  |  |  |  |  |  |  |
|  | 4 | **Junction Internal Structures** |  |  |  |  |  |  |  |  |  |  |  |  |
|  | 2 | **Transition Zone Lining** |  |  |  |  |  |  |  |  |  |  |  |  |
|  | 3 | **Transition Zone Internal Structures** |  |  |  |  |  |  |  |  |  |  |  |  |
|  | 5 | **PH Adits** |  | 2015-04-10 | 2017-06-05 |  |  |  |  |  |  |  |  |  |
|  | 1 | **Ventilation Adit** |  | 2015-04-10 | 2016-10-13 |  |  |  |  |  |  |  |  |  |
|  | 2 | **Type K Profile (CH610.485 to CH237)** |  |  |  |  |  |  |  |  |  |  |  |  |
|  | 1 | **Backfill of Enlarged Profile** |  |  |  |  |  |  |  |  |  |  |  |  |
|  | 2 | **Waterproofing** |  |  |  |  |  |  |  |  |  |  |  |  |
|  | 3 | **Type K Lining (K01 to K62)** |  |  |  |  |  |  |  |  |  |  |  |  |
|  | 1 | **K06 to K62 Lining** |  |  |  |  |  |  |  |  |  |  |  |  |

Notes:
- 822-SE-823-MP-1010: Notes: ? / April 2017 - Waiting for MTR's further instruction to when these pipe can / be removed due to the added restrictions on entering the main / tunnel.

| ID | WBS | Activity | Duration | Start | Finish | Predecessors | Complete | Planned start | Planned finish | Calendar |
| --- | --- | --- | --- | --- | --- | --- | --- | --- | --- | --- |
|  | 2 | **PH3A2 Junction K01 to K06 Lining** |  |  |  |  |  |  |  |  |
|  | 1 | **End Wall** |  |  |  |  |  |  |  |  |
|  | 2 | **K01 & K02** |  |  |  |  |  |  |  |  |
|  | 3 | **K03 to K06** |  |  |  |  |  |  |  |  |
|  | 4 | **Drainage and Invert** |  |  |  |  |  |  |  |  |
|  | 5 | **Centre Wall** |  |  |  |  |  |  |  |  |
|  | 3 | **Type K Profile (CH55.6 to CH237)** |  |  |  |  |  |  |  |  |
|  | 1 | **Backfill of Enlarged Profile** |  |  |  |  |  |  |  |  |
|  | 2 | **Waterproofing** |  |  |  |  |  |  |  |  |
|  | 3 | **Type K Lining (K63 to K94)** |  |  |  |  |  |  |  |  |
|  | 4 | **Drainage and Invert** |  |  |  |  |  |  |  |  |
|  | 5 | **Centre Wall** |  |  |  |  |  |  |  |  |
|  | 6 | **TCA1 - Along Type K Side (K83)** |  |  |  |  |  |  |  |  |
|  | 4 | **Connecting Adit at chg 591 - Type L Profile** |  |  |  |  |  |  |  |  |
|  | 1 | **Waterproofing** |  |  |  |  |  |  |  |  |
|  | 2 | **Lining** |  |  |  |  |  |  |  |  |
|  | 5 | **Connecting Adit at chg 605 - Type L Profile** |  |  |  |  |  |  |  |  |
|  | 1 | **Waterproofing** |  |  |  |  |  |  |  |  |
|  | 2 | **Lining** |  |  |  |  |  |  |  |  |
|  | 1 | **PHVA Finishing Works** |  | 2015-04-10 | 2016-10-13 |  |  |  |  |  |
| 822-PH-VA-FW-1010 |  | PHVA Degree 2 works by others (assumed period) | 78d | 2015-04-10 A | 2016-07-26 A |  | 100% | 2015-04-20 | 2015-07-20 | W11 6 day site - no stoppage at CNY |
| 822-PH-VA-FW-1030 |  | Finishing works after DC | 25d | 2016-06-29 A | 2016-07-26 A | 822-PH-VA-FW-1020 FS-25d | 100% | 2016-07-27 | 2016-08-24 | W11 6 day site - no stoppage at CNY |
| 822-PH-VA-FW-M-1030A |  | Water leakage at K-tunnel | 25d | 2016-07-01 A | 2016-08-16 A |  | 100% | 2016-07-01 | 2016-07-29 |  |
| 822-PH-VA-FW-1020 |  | PHVA Degree 3 works by others (assumed period) | 20d | 2016-07-05 A | 2016-07-26 A | 822-PH-VA-FW-1010 FS-25d | 100% | 2016-07-27 | 2016-08-18 | W11 6 day site - no stoppage at CNY |
| 822-PH-VA-FW-M-1030B |  | Water leakage at K-tunnel - Additional leaks | 50d | 2016-08-17 A | 2016-10-13 A |  | 100% | 2016-07-01 | 2016-08-27 |  |

Notes:
- 822-PH-VA-FW-1010: Notes: ? Waiting for DCs to complete their works / - SW 3Jan16
- 822-PH-VA-FW-1030: Notes: ? Waiting for DCs to complete their works / - SW 3Jan16
- 822-PH-VA-FW-1020: Notes: ? Waiting for DCs to complete their works / - SW 3Jan16
- 822-PH-VA-FW-M-1030B: Notes: ? Sep 2016 - Up to / 21 Sept 2016, still get 9 location of low points leakage identified at right / hand side tunnel and 2 locations at left hand side tunnel. Checked RHS on 29 / Sept 2016, still need to fix 4 more locations to complete the works. All works / at the RHS completed on 30 Sept 2016. Will continue to fix LHS in the coming / week expect to be completed by 7 Oct 2016

| ID | WBS | Activity | Duration | Start | Finish | Predecessors | Complete | Remaining | Planned start | Planned finish | Total float | Free float | Calendar |
| --- | --- | --- | --- | --- | --- | --- | --- | --- | --- | --- | --- | --- | --- |
|  | 2 | **Vehicular Access Adit** |  | 2015-04-13 | 2017-06-05 |  |  |  |  |  |  |  |  |
|  | 1 | **Type J Profile** |  |  |  |  |  |  |  |  |  |  |  |
|  | 1 | **Type J Lining** |  |  |  |  |  |  |  |  |  |  |  |
|  | 2 | **Invert & Drainage** |  |  |  |  |  |  |  |  |  |  |  |
|  | 4 | **Lining at TCA1 chg 180-200** |  |  |  |  |  |  |  |  |  |  |  |
|  | 5 | **TCA1** |  |  |  |  |  |  |  |  |  |  |  |
|  | 3 | **Adit Internal Structures** |  | 2015-04-13 | 2016-05-11 |  |  |  |  |  |  |  |  |
| 822-PH-VAA-IS-1100 |  | J56-57 (2 bays) - Internal Structures - by surface team | 30d | 2015-04-13 A | 2016-05-11 A |  | 100% |  | 2015-04-20 | 2015-05-25 |  |  |  |
|  | 2 | **Hammerhead** |  |  |  |  |  |  |  |  |  |  |  |
|  | 9 | **Link Structure** |  |  |  |  |  |  |  |  |  |  |  |
|  | 1 | **Base Slab to Level +34.1** |  |  |  |  |  |  |  |  |  |  |  |
|  | 2 | **Box Structure LHS** |  |  |  |  |  |  |  |  |  |  |  |
|  | 3 | **Box Structure RHS** |  |  |  |  |  |  |  |  |  |  |  |
|  | 4 | **Walls and Slab to +47.85** |  |  |  |  |  |  |  |  |  |  |  |
|  | 5 | **Walls and Slab to +50.75 & Parapet** |  |  |  |  |  |  |  |  |  |  |  |
|  | 6 | **Finishings** |  |  |  |  |  |  |  |  |  |  |  |
|  | 6 | **PH1 Junction** |  |  |  |  |  |  |  |  |  |  |  |
|  | 1 | **Staircase Adit (CH 125+781 - CH 125+790)** |  |  |  |  |  |  |  |  |  |  |  |
|  | 1 | **Lining Structure** |  |  |  |  |  |  |  |  |  |  |  |
|  | 2 | **Internal Structure** |  |  |  |  |  |  |  |  |  |  |  |
|  | 3 | **Underpass Internal Structure - Main Tunnel Section** |  |  |  |  |  |  |  |  |  |  |  |
|  | 4 | **Underpass Internal Structure - VAA Section** |  |  |  |  |  |  |  |  |  |  |  |
|  | 1 | **Foul Water Sump at lowest level** |  |  |  |  |  |  |  |  |  |  |  |
|  | 2 | **Sump Pump Room (PHV-UT-P-02)** |  |  |  |  |  |  |  |  |  |  |  |
|  | 3 | **Protected Lobbies + Corridors + Lobbies + LV Switch Rooms & Mains Room** |  |  |  |  |  |  |  |  |  |  |  |
|  | 4 | **Air Ducts Structure above Invert Slab** |  |  |  |  |  |  |  |  |  |  |  |
|  | 5 | **Roof Above Trackside LV Switch Room (PHV-T-E-13)** |  |  |  |  |  |  |  |  |  |  |  |
|  | 7 | **PHVAA Finishing Works** |  | 2015-05-02 | 2017-06-05 |  |  |  |  |  |  |  |  |
| 822-PH-VAA-FW-1020 |  | PHVAA Degree 2 (4H) works by others (assumed period) | 24d | 2015-05-02 A | 2017-01-07 A |  | 100% |  | 2015-06-15 | 2015-07-11 |  |  | W11 6 day site - no stoppage at CNY |
| 822-PH-VAA-FW-1000 |  | PHVAA Degree 2 (4G) works by others (assumed period) | 210d | 2015-06-01 A | 2017-01-07 A |  | 100% |  | 2015-10-01 | 2016-06-03 |  |  | W11 6 day site - no stoppage at CNY |
| 822-PH-VAA-FW-1010 |  | PHVAA Degree 3 (4G) works by others (assumed period) | 6d | 2015-12-01 A | 2017-03-31 A | 822-PH-VAA-FW-1000 FF | 100% |  | 2016-03-02 | 2016-03-08 |  |  | W11 6 day site - no stoppage at CNY |
| 822-PH-VAA-FW-1030 |  | PHVAA Degree 3 (4H) works by others (assumed period) | 25d | 2015-12-01 A | 2017-03-31 A | 822-PH-VAA-FW-1020 FF | 100% |  | 2016-03-02 | 2016-03-30 |  |  | W11 6 day site - no stoppage at CNY |
| 822-PH-VAA-FW-1040A |  | Seal up temporary wall opening at PHVAA and underpass | 37d | 2016-07-01 A | 2017-03-31 A | 822-PH-VAA-FW-1030 FF+3d, 822-PH-VAA-FW-1010 FF+3d, 822-PH-VAA-FW-1000 FF+3d, 822-PH-VAA-FW-1020 FF+3d | 100% |  | 2016-07-01 | 2016-08-12 |  |  |  |
| 822-PH-VAA-FW-1040J |  | Relocate damper at underpass | 6d | 2016-07-14 A | 2016-07-20 A |  | 100% |  |  |  |  |  |  |
| 822-PH-VAA-FW-1040D |  | Install aluminium louvre at link structure-7 nos. | 6d | 2016-07-25 A | 2016-08-09 A |  | 100% |  | 2016-07-25 | 2016-07-30 |  |  |  |
| 822-PH-VAA-FW-1040F |  | Fix tunel duct defects and remove cables | 12d | 2016-07-25 A | 2016-08-06 A | 822-PH-VAA-FW-1040G FF, 822-PH-VAA-FW-1040J | 100% |  |  |  |  |  |  |
| 822-PH-VAA-FW-1040C |  | Water leakage at J tunnel | 4d | 2016-07-27 A | 2016-07-30 A |  | 100% |  |  |  |  |  |  |
| 822-PH-VAA-FW-1040G |  | FSD underpass screeding & side drain cover level issue | 6d | 2016-08-12 A | 2016-08-15 A | 822-PH-VAA-FW-1040A | 100% |  | 2016-08-15 | 2016-08-20 |  |  |  |
| 822-PH-VAA-FW-1040H |  | Tunnel gate | 9d | 2016-09-23 A | 2016-09-30 A | 822-PH-VB4-FW-2160 | 100% |  | 2016-09-09 | 2016-09-19 |  |  |  |
| 822-PH-VAA-FW-1040E |  | Modified working platform at CLP cable pits. | 3d | 2016-10-03 A | 2016-10-17 A | 822-MT-CS-C-MP-1230 | 100% |  | 2016-10-03 | 2016-10-05 |  |  |  |
| 822-PH-VAA-FW-1040B |  | Install 3 revised manhole cover at underpass | 3d | 2016-10-06 A | 2016-10-08 A | 822-PH-VAA-FW-1040E | 100% |  |  |  |  |  |  |
| 822-PH-VAA-FW-1060 |  | Cat ladder for sump pump room | 2d | 2016-10-16 A | 2016-10-17 A | 822-PH-VAA-FW-1040 | 100% |  | 2016-11-14 | 2016-11-15 |  |  |  |
| 822-PH-VAA-FW-1040 |  | PHVAA Finishings after DC | 24d | 2017-02-16 A | 2017-03-31 A | 822-PH-VAA-FW-1010 FF+12d, 822-PH-VAA-FW-1030 FF+12d | 100% |  | 2017-03-15 | 2017-04-11 |  |  | W11 6 day site - no stoppage at CNY |
| 822-PH-VAA-FW-1050 |  | Undertake tests and pass Statutory Inspections (outstanding Works) | 72d | 2017-03-23 A | 2017-06-05 | 822-PH-VAA-FW-1040H, 822-PH-VAA-FW-1040E |  | 5d | 2017-02-28 | 2017-05-22 | 177.88d | 21d | W11 6 day site - no stoppage at CNY |

Notes:
- 822-PH-VAA-IS-1100: Notes: ? / Finish Date: 11-May-2016 102 - PHV Site Diary Recorded under item 6.1 / "-Pouring Concrete for Pat Heung Link Structure concrete road pavement at / Ch.46-56.7 (RHS). (40/20D - 7m3). / The day before, on 10-May-2016, it was / recorded that the LHS was poured.
- 822-PH-VAA-FW-1020: Notes: ? / Waiting for DCs to complete their works - SW 3Jan16 / Jan17 - DC complete / using the access openning left at PHVAA which was previously a structural wall / and had to be reinstated as such, but now EI-164 replaces the wall with an / access panel. The DC completed its cabling works early January / 2017.
- 822-PH-VAA-FW-1000: Notes: ? Waiting for DCs to complete their / works - SW / Jan17 - DC complete using the access openning / left at PHVAA which was previously a structural wall and had to be reinstated as / such, but now EI-164 replaces the wall with an access panel. The DC completed / its cabling works early January 2017.
- 822-PH-VAA-FW-1010: Notes: ? Waiting for DCs to complete their / works - SW 3Jan16
- 822-PH-VAA-FW-1030: Notes: ? Waiting for DCs to complete their / works - SW 3Jan16
- 822-PH-VAA-FW-1040A: Notes: ? / August 2016 - Original opening backfill completed on 4 Aug 2016. However, / under CSF-4413, MTR has some comments, some new openings need to be seal up, and / some wait for DC install the sleeve pipes before seal up the opening. So / anticipated completion date further be changed to 24 Sept 2016. Current / percentage completion is arround 90% up to 12 Sept 2016. / September 2016 - To / backfill the outstanding openings at underpass (late handover by other DC). As / confirmed by DCs, most of the opening will be handover to LCAL for backfill / before 1 Oct 2016. Backfill the opening at underpass in the track side of Main / Tunnel.

| ID | WBS | Activity | Duration | Start | Finish | Predecessors | Complete | Planned start | Planned finish | Calendar |
| --- | --- | --- | --- | --- | --- | --- | --- | --- | --- | --- |
|  | 6 | **Shek Yam Adits** |  |  |  |  |  |  |  |  |
|  | 1 | **SY Access Adit** |  |  |  |  |  |  |  |  |
|  | 2 | **Crusher Adit** |  |  |  |  |  |  |  |  |
|  | 7 | **VB4** |  | 2014-04-28 | 2017-06-30 |  |  |  |  |  |
|  | 3 | **VB4 Internal Works** |  | 2014-04-28 | 2017-03-16 |  |  |  |  |  |
|  | 1 | **VB4 Finishing Works** |  | 2014-04-28 | 2017-03-16 |  |  |  |  |  |
| 822-PH-VB4-IW-1000 |  | VB4 Degree 3 works by others (period assumed) | 180d | 2014-04-28 A | 2017-01-26 A |  | 100% | 2016-09-01 | 2017-04-03 |  |
| 822-PH-VB4-IW-1010 |  | Install permenent doors | 24d | 2014-08-18 A | 2016-09-15 A | 822-PH-VB4-IW-1000 FF+6d | 100% | 2016-09-01 | 2016-09-28 |  |
| 822-PH-VB4-IW-1030 |  | Undertake tests and pass Statutory Inspections (outstanding Works) | 72d | 2017-01-21 A | 2017-03-16 A | 822-PH-VB4-EW-1220, 822-PH-VB4-IW-1000 | 100% | 2017-01-31 | 2017-04-24 | W11 6 day site - no stoppage at CNY |
| 822-PH-VB4-IW-1040 |  | VB4 Signage installation | 6d | 2017-01-23 A | 2017-02-28 A | 822-PH-VB4-IW-1010 FF, 822-PH-VAA-FW-1040B | 100% | 2017-02-01 | 2017-02-07 |  |
| 822-PH-VB4-IW-1020 |  | VB4 Finishing works after DC | 24d | 2017-01-26 A | 2017-01-27 A | 822-PH-VB4-IW-1000, 822-PH-VB4-IW-1010 FF | 100% | 2017-02-01 | 2017-02-28 |  |
|  | 2 | **VB4 External Works** |  | 2014-11-21 | 2017-06-30 |  |  |  |  |  |
| 822-PH-VB4-FW-2090 |  | Slop work around VB4 | 54d | 2016-05-02 A | 2016-07-02 A |  | 100% |  |  |  |
| 822-PH-VB4-FW-2050 |  | Remove temporary power and lighting (EI/153) | 26d | 2016-05-20 A | 2016-12-10 A | 822-PH-VB4-FW-2110, 822-PH-VB4-FW-3090 | 100% | 2017-01-09 | 2017-02-10 |  |
| 822-PH-VB4-FW-2080 |  | Install door curb at CLP Tx room | 16d | 2016-06-15 A | 2016-07-02 A |  | 100% |  |  |  |
| 822-PH-VB4-FW-2030 |  | Brick Wall for Land Owner | 32d | 2016-07-01 A | 2016-10-04 A | 822-PH-VB4-FW-2090 | 100% | 2016-07-01 | 2016-08-06 |  |
| 822-PH-VB4-FW-2150 |  | VB4 - water meter cabinet | 12d | 2016-07-01 A | 2016-07-15 A | 822-PH-VB4-FW-2080 | 100% | 2016-07-01 | 2016-07-14 |  |
| 822-PH-VB4-FW-2180 |  | VB4 - metal plate cover on wall and defects | 18d | 2016-07-10 A | 2016-10-11 A |  | 100% | 2016-07-11 | 2016-07-30 |  |
| 822-PH-VB4-FW-2190 |  | VB4 - seal up door gaps | 25d | 2016-07-16 A | 2016-09-22 A | 822-PH-VB4-FW-2150 | 100% | 2016-07-27 | 2016-08-24 |  |
| 822-PH-VB4-FW-2010 |  | VB4 - 2 nos. concrete hatch cover | 12d | 2016-07-18 A | 2016-10-29 A |  | 100% | 2016-07-18 | 2016-07-30 |  |
| 822-PH-VB4-FW-2130 |  | CCTV for drainage up to Kum Sheung Road | 6d | 2016-07-18 A | 2016-07-23 A | 822-PH-VB4-FW-2150 | 100% |  |  |  |
| 822-PH-VB4-FW-2220 |  | Remove Temporary Platform at Open Channel | 10d | 2016-07-29 A | 2016-08-05 A | 822-PH-VB4-FW-2130 | 100% | 2016-08-15 | 2016-08-25 |  |
| 822-PH-VB4-FW-2040 |  | VB4 - Oustanding Screeding Work | 12d | 2016-08-01 A | 2016-08-15 A | 822-PH-VB4-FW-2220 SS+1d, 822-PH-VB4-FW-2100 SS+1d | 100% | 2016-10-01 | 2016-10-14 |  |
| 822-PH-VB4-FW-2120 |  | 3 nos. of substations, switch box near portal (wait for MTR instruction) | 26d | 2016-09-01 A | 2016-12-03 A |  | 100% | 2016-11-02 | 2016-12-01 |  |
| 822-PH-VB4-FW-2160 |  | Color Paint -Hand rail, Fence wall and parapet | 3d | 2016-09-21 A | 2016-11-03 A | 822-PH-VB4-FW-2010 | 100% | 2016-09-06 | 2016-09-08 |  |
| 822-PH-VB4-FW-2145 |  | Fabricate and deliver Steel deck for open channel aside the portal (no work over china national holiday 1-9Oct16) | 16d | 2016-09-22 A | 2016-10-14 A | 822-PH-VB4-FW-2220 | 100% | 2016-09-01 | 2016-09-19 |  |
| 822-PH-VB4-FW-3100 |  | Handrail fabrication and delivery (no work over china national holiday 1-9Oct16) | 16d | 2016-09-22 A | 2016-10-17 A |  | 100% | 2016-09-22 | 2016-10-10 |  |
| 822-PH-VB4-FW-2060 |  | VB4 -Touch - up for wall paint | 12d | 2016-09-27 A | 2017-03-14 A | 822-PH-VB4-FW-2040, 822-PH-VB4-FW-2100, 822-PH-VB4-FW-2190 | 100% | 2016-10-15 | 2016-10-28 |  |
| 822-PH-VB4-FW-2020 |  | Remove temporary handrail at Portal | 12d | 2016-10-12 A | 2016-10-25 A | 822-PH-VB4-FW-2180 | 100% |  |  |  |
| 822-PH-VB4-FW-2140 |  | Steel deck across the open channel aside the portal | 6d | 2016-10-15 A | 2016-11-05 A | 822-PH-VB4-FW-2220, 822-PH-VB4-FW-2145, 822-PH-VB4-FW-3110 | 100% | 2016-11-15 | 2016-11-21 |  |
| 822-PH-VB4-FW-3120 |  | Type 2 handrail along open channel Wall | 6d | 2016-10-15 A | 2016-10-22 A | 822-PH-VB4-FW-3100, 822-PH-VB4-FW-2140 | 100% | 2016-11-22 | 2016-11-28 |  |
| 822-PH-VB4-FW-3130 |  | Still Covers (replaces Demolish uncharted drain) (EI/158) | 6d | 2016-10-15 A | 2016-10-31 A | 822-PH-VB4-FW-2070 | 100% | 2016-11-05 | 2016-11-11 |  |
| 822-PH-VB4-FW-3110 |  | Type 1 handrail at portal to VB4 | 2d | 2016-10-17 A | 2016-10-25 A | 822-PH-VB4-FW-3100, 822-PH-VB4-EW-1230H, 822-PH-VB4-FW-3130 | 100% | 2016-11-12 | 2016-11-14 |  |
| 822-PH-VB4-FW-2200 |  | Site Clearance | 26d | 2016-11-01 A | 2017-04-30 A | 822-PH-VB4-IW-1030, 822-PH-VB4-FW-2050, 822-PH-VB4-FW-2120, 822-PH-VB4-EW-1070, 822-PH-VB4-EW-1150, 822-PH-VB4-FW-3090 FF+12d, 822-PH-VB4-EW-1230E FF+12d, 822-PH-VB4-IW-1020, 822-PH-VB4-FW-3120, 822-PH-VB4-FW-3110, 822-PH-VB4-IW-1040 | 100% | 2017-02-08 | 2017-03-09 |  |
| 822-PH-VB4-FW-2230 |  | VB4- 8 nos. concrete pit covers | 9d | 2016-11-03 A | 2016-11-12 A | 822-PH-VB4-FW-2010 | 100% | 2016-10-05 | 2016-10-14 |  |
| 822-PH-VB4-FW-3140 |  | Site Fence for TOA Land (EI/159) | 26d | 2016-11-08 A | 2017-01-27 A | 822-PH-VB4-FW-3120 | 100% | 2016-11-29 | 2016-12-28 |  |
| 822-PH-VB4-FW-2100 |  | VB4 - Cladding at Tx room | 6d | 2016-12-09 A | 2016-12-14 A | 822-PH-VB4-FW-2080 | 100% | 2016-09-30 | 2016-10-06 |  |
| 822-PH-VB4-FW-2170 |  | VB4 - openings to be closed | 6d | 2017-01-26 A | 2017-01-27 A | 822-PH-VB4-FW-2180 | 100% | 2016-12-31 | 2017-01-07 |  |
| 822-PH-VB4-FW-2110 |  | Demolish Substation at Surface near IOW container | 12d | 2017-03-01 A | 2017-03-14 A | 822-PH-VB4-FW-2170, 822-PH-VB4-FW-2060 FF, 822-PH-VB4-FW-2020 FF | 100% | 2017-02-28 | 2017-03-13 |  |
| 822-PH-VB4-FW-EI167 |  | FSD Coloured Concrete Pavement requirements (EI/167 - 23Mar17) | 13d | 2017-04-25 A | 2017-05-12 A |  | 100% | 2017-05-01 | 2017-05-15 |  |
| 822-PH-VB4-FW-2205 |  | EI167-Coloured Carpark Concrete - Storage & Removal of grass cell Reinstatement of TGLA | 98d | 2017-05-02 A | 2017-05-12 A | 822-PH-VB4-FW-EI167 | 100% | 2017-05-10 | 2017-08-31 |  |

Notes:
- 822-PH-VB4-IW-1000: Notes: ? Jan17 - As per email dated 24 January / 2017 from Chuck Lai (MTR Construction Engineer) the Contractor has commenced / closing of the openings without pipe sleeves and if the DC require the opennings / afterwards they must reinstate and paint afterwards.
- 822-PH-VB4-IW-1030: Notes: ? / Monthly CM Progress Meeting Minutes 84, held 10 March 2017, Item 6.3 VB4 / FS Inspection: 16 March 2017
- 822-PH-VB4-FW-2050: Notes: ? / NOV6 - EI issued to use SB for power and CLP has not completed permantent / power allowing us to remove temporary power and lighting
- 822-PH-VB4-FW-2190: Notes: ? Sep 2016 - Works completed on 22 / Septebmer 2016. MTR declined to attend inspection.
- 822-PH-VB4-FW-2060: Notes: ? August 2016 - Not yet done, wait for / DC complete the works prior to do the final wall paints again
- 822-PH-VB4-FW-3130: Notes: ? / NOV6 - letter recieved which revises the original demolition works with a / still cover over the drain. letter ref.: XXXXX dated XXXXX
- 822-PH-VB4-FW-3140: Notes: ? DEC6 - Temporary water pipe clashing / with the fence so it can not be closed up. Awaiting EI to divert the / pipe.

| ID | WBS | Activity | Type | Duration | Start | Finish | Predecessors | Complete | Planned start | Planned finish | Total float |
| --- | --- | --- | --- | --- | --- | --- | --- | --- | --- | --- | --- |
|  | 1 | **External ABWF** |  |  |  |  |  |  |  |  |  |
|  | 2 | **Roofing Works** |  |  | 2016-06-01 | 2016-09-28 |  |  |  |  |  |
| 822-PH-VB4-EW-1075 |  | Install Copping at roof (completed) |  | 27d | 2016-06-01 A | 2016-07-01 A |  | 100% |  |  |  |
| 822-PH-VB4-EW-1070 |  | Install green roof for VB4 |  | 33d | 2016-08-13 A | 2016-09-28 A | 822-PH-VB4-EW-1160 | 100% | 2016-07-27 | 2016-09-02 |  |
|  | 3 | **Underground Drainage** |  |  | 2014-11-21 | 2017-01-27 |  |  |  |  |  |
| 822-PH-VB4-EW-1080 |  | Storm Drainage |  | 142d | 2014-11-21 A | 2016-01-17 A | 822-PH-VB4-EW-1130 SS+3d | 100% | 2014-12-18 | 2015-06-13 |  |
| 822-PH-VB4-EW-1130 |  | Drainage along Kam Shung Road |  | 110d | 2014-11-21 A | 2016-01-30 A |  | 100% | 2014-12-15 | 2015-05-04 |  |
| 822-PH-VB4-EW-1170 |  | Drainage Manhole, Gully and Pipe |  | 138d | 2014-12-15 A | 2016-02-25 A | 822-PH-VB4-EW-1130 SS+8d | 100% | 2015-01-02 | 2015-06-22 |  |
| 822-PH-VB4-EW-1160 |  | Power Draw Pit & Duct/ Earth Mat |  | 119d | 2015-04-25 A | 2016-03-18 A |  | 100% | 2015-05-09 | 2015-09-26 |  |
| 822-PH-VB4-EW-1100 |  | Site formation and retaining wall |  | 123d | 2015-06-01 A | 2016-01-16 A | 822-PH-VB4-EW-1080 SS+9d | 100% | 2015-06-01 | 2015-10-27 |  |
| 822-PH-VB4-EW-1150 |  | Surface Drainage |  | 70d | 2015-11-02 A | 2017-01-27 A | 822-PH-VB4-EW-1080 FS-24d | 100% | 2015-11-16 | 2016-02-08 |  |
|  | 4 | **Emergency Vehicle Access Road** |  |  | 2015-03-23 | 2017-05-12 |  |  |  |  |  |
| 822-PH-VB4-EW-1210 |  | Perm Access Roadworks & Footpath (EVA) |  | 45d | 2015-03-23 A | 2016-04-06 A | 822-PH-VB4-EW-1200 | 100% | 2015-10-31 | 2015-12-22 |  |
| 822-PH-VB4-EW-1200 |  | Kerb and Roadworks (VB4 & Tunnel) |  | 40d | 2015-11-23 A | 2016-05-26 A | 822-PH-VB4-EW-1150 SS+8d | 100% | 2015-09-11 | 2015-10-30 |  |
| 822-PH-VB4-EW-1220 |  | Fire Hydrant, Sign and Street Furniture |  | 40d | 2016-02-26 A | 2017-05-12 A | 822-PH-VB4-EW-1210 | 100% | 2016-03-31 | 2016-05-16 |  |
| 822-PH-VB4-FW-3000 |  | TTM - Presentation at SLG Associated Str lighting Works along EVA (EI/145) |  | 1d | 2016-05-01 A | 2016-06-30 A |  | 100% | 2016-07-27 | 2016-07-27 |  |
| 822-PH-VB4-FW-3010 |  | TTM -Application for Exvation Permit (XP) for Associated Str lighting Works along EVA (EI/145) |  | 79d | 2016-06-29 A | 2016-10-22 A | 822-PH-VB4-FW-3000 | 100% | 2016-07-28 | 2016-10-27 |  |
| 822-PH-VB4-FW-3012 |  | TTM -Application for Exvation Permit (XP) (EI/145) unforeseen Waiver Vetting application |  | 6d | 2016-08-31 A | 2016-09-06 A |  | 100% | 2016-07-28 | 2016-08-03 |  |
| 822-PH-VB4-FW-2070 |  | Concrete surround for light duct at run-in (EI/142) |  | 9d | 2016-09-23 A | 2016-11-08 A | 822-PH-VB4-FW-2230, 822-PH-VB4-FW-2030, 822-PH-VB4-EW-1220 | 100% | 2016-10-20 | 2016-10-29 |  |
| 822-PH-VB4-FW-3070 |  | TTM - RWA Submission and Approval (With CXP C000901) Associated Str lighting Works along EVA (EI/145) |  | 14d | 2016-10-23 A | 2016-12-09 A | 822-PH-VB4-FW-3010, 822-PH-VB4-FW-3012 | 100% | 2016-10-24 | 2016-11-08 |  |
| 822-PH-VB4-FW-3080 |  | TTM - Ready for Implementation of TTM Associated Str lighting Works along EVA (EI/145) | milestone | 0d | 2016-11-09 A | 2016-11-09 A | 822-PH-VB4-FW-3070 FF | 100% | 2016-11-08 | 2016-11-08 |  |
| 822-PH-VB4-FW-3090 |  | Associated Street lighting Works along EVA and Kam Sheung Road (EI/145) |  | 52d | 2016-11-09 A | 2017-01-23 A | 822-PH-VB4-FW-3080 | 100% | 2016-11-09 | 2017-01-09 |  |
|  | 5 | **Landscaping** |  |  | 2016-03-23 | 2017-06-30 |  |  |  |  |  |
| 822-PH-VB4-EW-1230 |  | Hard and Soft Landscaping |  | 137d | 2016-03-23 A | 2016-12-12 A | 822-PH-VB4-EW-1170 | 100% | 2016-04-01 | 2016-09-07 |  |
| 822-PH-VB4-EW-1230B |  | Grass cell at car park |  | 17d | 2016-06-29 A | 2016-07-18 A |  | 100% |  |  |  |
| 822-PH-VB4-EW-1220A |  | 5 nos of signage boards for DLO |  | 17d | 2016-07-01 A | 2016-07-20 A |  | 100% |  |  |  |
| 822-PH-VB4-EW-1230A |  | Hydroseed on Portal Rockfill Slope |  | 20d | 2016-07-01 A | 2016-07-23 A |  | 100% |  |  |  |
| 822-PH-VB4-EW-1230F |  | Tree transplanting, DC-801, VB4 Fencing close up |  | 11d | 2016-07-19 A | 2016-07-26 A | 822-PH-VB4-EW-1230B FF, 822-PH-VB4-EW-1230A FF, 822-PH-VB4-EW-1220A FF, 822-SE-SY-2000 | 100% | 2016-07-19 | 2016-07-30 |  |
| 822-PH-VB4-EW-1230E |  | Tree planting at Portal, VB4 planting area |  | 77d | 2016-08-15 A | 2016-12-12 A | 822-PH-VB4-EW-1230C FS+6d | 100% | 2016-10-22 | 2017-01-20 |  |
| 822-PH-VB4-EW-1230C |  | Tree planting soil test report |  | 13d | 2016-11-03 A | 2016-11-18 A | 822-PH-VB4-EW-1230F | 100% | 2016-09-30 | 2016-10-14 |  |
| 822-PH-VB4-EW-1230H |  | 3 no. Irrigation Concrete Stand VB4 slope |  | 9d | 2016-11-11 A | 2017-02-28 A | 822-PH-VB4-EW-1150 | 100% | 2016-10-26 | 2016-11-04 |  |
| 822-PH-VB4-EW-1230G |  | Street Lighting at Kam Sheung Road (-Deleted- duplicate with 822-PH-VB4-FW-3090) |  | 27d | 2017-05-31 | 2017-06-30 | 822-PH-VB4-FW-3090 |  |  |  | 156d |

Notes:
- 822-PH-VB4-EW-1070: Notes: ? Sep2016 - Joint site inspecton / for the irrigation system on 20 Sept 2016 has been done. 855 completed the / works of earthing on 24 Sep 2016. Green roof tree planting works start on / 26 Sep 2016. Green roof works completed on 28 Sept 2016.
- 822-PH-VB4-EW-1150: Notes: ? Sep 2016 - Waiting for CCTV report / to establish if any further work is required.
- 822-PH-VB4-EW-1200: Notes: ? / Nov6 - Revised to 23-Nov-2015 according to "822 Agreed Actual Dates / 2016-03-03.pdf" as per meeing on 3 March 2016. Completion date revised to 26 May / 2016 as per AT's JUN6 programme update request.
- 822-PH-VB4-EW-1220: Notes: ? / April 2017 - Waiting for highways department to come and install the / street light lamp posts. Thereafter we can complete the foot path / works.
- 822-PH-VB4-FW-3010: Notes: ? / August 2016 - delayed due to requirement to apply for an excavation waiver / because the road had already been excavated and backfilled by another / Contract within a 3 month period and its a requirement that if you want to / excavation this area a waiver applicaiton is also required. Potentially delaying / the application by 2 weeks or more depending on if the TTM application has to / commence from the start or if Hyd will accept the documents already submitted / and continue from just when a waiver was required. / The Waiver process has been added as Activity ID 822-PH-VB4-FW-3012 - TTM / -Application for Exvation Permit (XP) (EI/145) unforeseen Waiver Vetting / application
- 822-PH-VB4-FW-3012: Notes: ? August 2016 - delayed due to / requirement to apply for an excavation waiver because the road had already been / excavated and backfilled by another Contract within a 3 month period and / its a requirement that if you want to excavation this area a waiver applicaiton / is also required. Potentially delaying the application by 2 weeks or more / depending on if the TTM application has to commence from the start or if Hyd / will accept the documents already submitted and continue from just when a / waiver was required.

| ID | WBS | Activity | Duration | Start | Finish | Predecessors | Complete | Planned start | Planned finish | Calendar |
| --- | --- | --- | --- | --- | --- | --- | --- | --- | --- | --- |
|  | 8 | **SM Shaft EAP & VB5** |  | 2015-06-18 | 2017-09-29 |  |  |  |  |  |
|  | 1 | **EAP** |  | 2015-06-18 | 2017-05-20 |  |  |  |  |  |
|  | 1 | **Lining & Invert** |  |  |  |  |  |  |  |  |
|  | 2 | **Internal Structures chg 7 to 25** |  |  |  |  |  |  |  |  |
|  | 3 | **Internal Structures chg 25 to 32** |  |  |  |  |  |  |  |  |
|  | 4 | **Internal Structures chg 32 to 43** |  |  |  |  |  |  |  |  |
|  | 5 | **Finishing Works** |  | 2015-06-18 | 2017-05-20 |  |  |  |  |  |
| 822-SM-EAP-FW-1020 |  | Degree 3 works by others (period assumed) | 42d | 2015-06-18 A | 2017-03-31 A |  | 100% | 2015-06-18 | 2015-08-05 | W11 6 day site - no stoppage at CNY |
| 822-SM-EAP-FW-1030 |  | Finishing works after DC | 12d | 2016-02-23 A | 2017-03-31 A | 822-SM-EAP-FW-1020 | 100% | 2016-05-25 | 2016-06-07 | W11 6 day site - no stoppage at CNY |
| 822-SM-EAP-MP-1030A |  | Concrete remedial works at small cell | 12d | 2016-06-06 A | 2016-06-18 A |  | 100% |  |  |  |
| 822-SM-EAP-MP-1030B |  | remove scaffolding at small cell | 12d | 2016-06-13 A | 2016-06-25 A | 822-SM-EAP-MP-1030A FF+6d | 100% |  |  |  |
| 822-SM-EAP-MP-1030C |  | Backfill door gap (more than 50mm) | 12d | 2016-06-20 A | 2016-07-02 A | 822-SM-EAP-MP-1030B FF+6d | 100% |  |  |  |
| 822-SM-EAP-MP-1030D |  | Install cat-ladder at sump pit tank, hatch access | 12d | 2016-06-27 A | 2016-07-09 A | 822-SM-EAP-MP-1030C FF+6d, 822-SM-S-L6-MP-1070A | 100% |  |  |  |
| 822-SM-EAP-MP-1030G |  | Backfill service duct wall / slab opening | 12d | 2016-07-25 A | 2017-03-31 A | 822-SM-EAP-MP-1030D, 822-SM-EAP-FW-1020 | 100% | 2016-07-25 | 2016-08-06 |  |
| 822-SM-EAP-MP-1030H |  | Install door leaf | 6d | 2016-07-25 A | 2017-01-27 A | 822-SM-EAP-MP-1030G FF, 822-SM-S-L7-MP-1120 FF+6d | 100% | 2016-07-25 | 2016-07-30 |  |
| 822-SM-EAP-MP-1030E |  | Install valve at sump pit tanks | 6d | 2016-12-22 A | 2016-12-30 A | 822-SM-EAP-MP-1030D FS+18d, 822-SM-EAP-FW-1020 | 100% | 2016-10-31 | 2016-11-05 |  |
| 822-SM-EAP-MP-1030F |  | Install grating at surface channel | 6d | 2016-12-22 A | 2016-12-30 A | 822-SM-EAP-MP-1030E FF, 822-SM-EAP-FW-1020 | 100% | 2016-10-31 | 2016-11-05 |  |
| 822-SM-EAP-MP-1030K |  | Install platform at CLP Drawpit | 12d | 2017-05-01 A | 2017-05-13 A | 822-SM-EAP-MP-1030E FF+11d, 822-SM-EAP-MP-1030F FF+11d, 822-SM-EAP-FW-1020, 822-SM-EAP-MP-1030G | 100% |  |  |  |
| 822-SM-EAP-MP-1030J |  | final cleaning | 6d | 2017-05-15 A | 2017-05-20 A | 822-SM-EAP-MP-1030G, 822-SM-EAP-MP-1030F, 822-SM-EAP-MP-1030K, 822-SM-EAP-FW-1030 | 100% |  |  |  |
|  | 2 | **SM Shaft** |  | 2016-03-01 | 2017-04-29 |  |  |  |  |  |
|  | 1 | **Shaft Lining** |  |  |  |  |  |  |  |  |
|  | 6 | **Preparation Works** |  |  |  |  |  |  |  |  |
|  | 7 | **Track level to L11** |  |  |  |  |  |  |  |  |
|  | 8 | **L11 to L10** |  |  |  |  |  |  |  |  |
|  | 9 | **L10 to L9** |  |  |  |  |  |  |  |  |
|  | 10 | **L9 to L8** |  |  |  |  |  |  |  |  |
|  | 11 | **L8 to L7** |  | 2016-06-10 | 2016-06-30 |  |  |  |  |  |
| 822-SM-S-L7-1070 |  | Installation of Cat ladder for water tank | 5d | 2016-06-10 A | 2016-06-30 A | 822-SM-VB5-EW-1010 | 100% | 2016-08-05 | 2016-08-10 |  |

Notes:
- 822-SM-EAP-FW-1020: Notes: ? Waiting for DCs to complete their / works - SW 3Jan16

| ID | WBS | Activity | Duration | Start | Finish | Predecessors | Complete | Planned start | Planned finish |
| --- | --- | --- | --- | --- | --- | --- | --- | --- | --- |
|  | 2 | **Above Track to L8** |  | 2016-06-20 | 2017-04-01 |  |  |  |  |
| 822-SM-S-L7-MP-11140 |  | Seal & Enlarge Wall openings above track level for C855 (EI/156) | 6d | 2016-06-20 A | 2016-06-25 A | 822-SM-S-L4-MP-1080 | 100% |  |  |
| 822-SM-S-L7-MP-1110 |  | Backfill service duct wall / slab opening | 12d | 2016-07-18 A | 2017-03-25 A | 822-SM-EAP-MP-1030G FF | 100% | 2016-07-18 | 2016-07-30 |
| 822-SM-S-L7-MP-1120 |  | Install door leaf | 6d | 2016-07-25 A | 2016-09-29 A | 822-SM-S-L6-MP-1120 | 100% | 2016-07-25 | 2016-07-30 |
| 822-SM-S-L7-MP-1130 |  | final cleaning | 6d | 2017-03-27 A | 2017-04-01 A | 822-SM-S-L7-MP-1120, 822-SM-S-L7-MP-1110 | 100% | 2017-04-11 | 2017-04-17 |
|  | 12 | **L7 to L6** |  | 2016-06-10 | 2017-04-01 |  |  |  |  |
| 822-SM-S-L6-1070 |  | Installation of Cat ladder for water tank | 5d | 2016-06-10 A | 2016-06-30 A | 822-SM-VB5-EW-1010 | 100% | 2016-08-05 | 2016-08-10 |
| 822-SM-S-L6-MP-1070A |  | Install cat-ladder and handrail | 6d | 2016-06-20 A | 2016-06-25 A | 822-SM-S-L7-1070 SS | 100% |  |  |
| 822-SM-S-L7-MP-1080 |  | Trim door frame (2 nos) to cell 15 | 3d | 2016-06-20 A | 2016-06-22 A | 822-SM-EAP-MP-1030A | 100% |  |  |
| 822-SM-S-L7-MP-1100 |  | Backfill door gap (more than 50mm) | 6d | 2016-06-27 A | 2016-07-02 A | 822-SM-S-L7-MP-1080, 822-SM-S-L7-MP-11140 | 100% |  |  |
| 822-SM-S-L6-MP-1100 |  | Backfill door gap (more than 50mm) | 6d | 2016-07-04 A | 2016-07-09 A | 822-SM-S-L7-MP-1100, 822-SM-S-L7-MP-1080 | 100% |  |  |
| 822-SM-S-L6-MP-1080 |  | Core opening and install G.I pipes (EI-152) | 18d | 2016-07-14 A | 2016-11-08 A | 822-SM-EAP-MP-1030A | 100% | 2016-06-13 | 2016-07-02 |
| 822-SM-S-L6-MP-1120 |  | Install door leaf | 6d | 2016-07-18 A | 2016-07-23 A | 822-SM-S-L6-MP-1100, 822-SM-S-L4-MP-1100, 822-SM-V5-FW-M-1170O | 100% |  |  |
| 822-SM-S-L6-MP-1090 |  | Repair to water leakage | 12d | 2016-07-25 A | 2016-11-30 A | 822-SM-S-L6-MP-1120 | 100% | 2016-07-25 | 2016-08-06 |
| 822-SM-S-L6-MP-1110 |  | Backfill service duct wall / slab opening | 12d | 2016-08-15 A | 2017-02-28 A | 822-SM-S-L6-MP-1100, 822-SM-S-L6-MP-1080 | 100% | 2016-09-02 | 2016-09-15 |
| 822-SM-S-L6-MP-1130 |  | final cleaning | 6d | 2017-03-27 A | 2017-04-01 A | 822-SM-S-L6-MP-1110 FF+3d, 822-SM-S-L6-MP-1090 SS, 822-SM-S-L6-MP-1120 | 100% | 2017-02-28 | 2017-03-06 |
|  | 13 | **L6 to L5** |  |  |  |  |  |  |  |
|  | 14 | **L5 to +55.85mPD** |  |  |  |  |  |  |  |
|  | 4 | **L5 to L4** |  | 2016-08-15 | 2017-02-28 |  |  |  |  |
| 822-SM-S-L4-MP-1090 |  | Backfill service duct wall / slab opening | 6d | 2016-08-15 A | 2017-02-21 A | 822-SM-S-L7-MP-1110, 822-SM-EAP-MP-1030G | 100% | 2016-08-26 | 2016-09-01 |
| 822-SM-S-L4-MP-1110 |  | final cleaning | 6d | 2016-08-23 A | 2017-02-28 A | 822-SM-S-L4-MP-1090, 822-SM-S-L7-MP-1130 | 100% | 2016-09-02 | 2016-09-08 |
|  | 15 | **+55.85mPD to +58.55mPD (L4)** |  |  |  |  |  |  |  |
|  | 16 | **Finishing Works** |  | 2016-03-01 | 2017-04-29 |  |  |  |  |
| 822-SM-S-FW-1010 |  | Finishing work after DC | 24d | 2016-03-01 A | 2017-04-04 A | 822-SM-VB5-FW-1160 FF+3d, 822-SM-EAP-FW-1020 FF+3d | 100% | 2016-06-11 | 2016-07-08 |
| 822-SM-S-L4-MP-1080 |  | Backfill door gap (more than 50mm) | 6d | 2016-06-13 A | 2016-06-18 A | 822-SM-EAP-MP-1030A FF | 100% |  |  |
| 822-SM-S-L4-MP-1070 |  | Close temporary opening for small cells remedial works | 6d | 2016-06-20 A | 2016-06-25 A | 822-SM-S-L4-MP-1080 | 100% |  |  |
| 822-SM-S-L4-MP-1100 |  | Install door leaf | 6d | 2016-07-04 A | 2016-07-09 A | 822-SM-S-L7-MP-1100, 822-SM-S-L4-MP-1070 | 100% |  |  |
| 822-SM-S-L4-MP-1120 |  | Shaft - Skirting for precast staircase | 26d | 2016-12-22 A | 2017-04-29 A | 822-SM-VB5-L1D-2040 | 100% | 2016-11-02 | 2016-12-01 |

| ID | WBS | Activity | Type | Duration | Start | Finish | Predecessors | Complete | Planned start | Planned finish | Calendar |
| --- | --- | --- | --- | --- | --- | --- | --- | --- | --- | --- | --- |
|  | 3 | **VB5** |  |  | 2015-10-02 | 2017-06-17 |  |  |  |  |  |
|  | 1 | **L1-GF (Gridline A-D)** |  |  |  |  |  |  |  |  |  |
|  | 2 | **GF-U1 (Gridline A-C)** |  |  |  |  |  |  |  |  |  |
|  | 13 | **L4 Raft Footing (Gridline C-F)** |  |  |  |  |  |  |  |  |  |
|  | 14 | **Perimeter Walls from L4 to L2 (Gridline D-F)** |  |  |  |  |  |  |  |  |  |
|  | 15 | **L4-L3 (Gridline D-F)** |  |  |  |  |  |  |  |  |  |
|  | 16 | **L3-L2 (Gridline D-F)** |  |  |  |  |  |  |  |  |  |
|  | 17 | **L2-L1 (Gridline D-F)** |  |  |  |  |  |  |  |  |  |
|  | 18 | **L1-GF (Gridline D-F)** |  |  |  |  |  |  |  |  |  |
|  | 19 | **Removal of Noise Enclosure & Gantry Crane** |  |  | 2015-11-16 | 2016-03-28 |  |  |  |  |  |
| 822-SM-VB5-RE-2050 |  | Noise Enclosure Remove side panels GL D-F |  | 6d | 2015-11-16 A | 2015-11-21 A |  | 100% |  |  |  |
| 822-SM-VB5-RE-2060 |  | Noise Enclosure Remove roof panels GL D-F |  | 6d | 2015-11-23 A | 2015-11-28 A | 822-SM-VB5-RE-2050 | 100% |  |  |  |
| 822-SM-VB5-RE-2070 |  | Noise Enclosure Remove side panels GL A-D |  | 6d | 2015-11-30 A | 2016-01-27 A | 822-SM-VB5-RE-2060 | 100% | 2015-11-30 | 2015-12-05 |  |
| 822-SM-VB5-RE-2080 |  | Noise Enclosure Remove roof panels GL A-D |  | 6d | 2015-12-07 A | 2016-01-20 A | 822-SM-VB5-RE-2070 | 100% | 2015-12-07 | 2015-12-12 |  |
| 822-SM-VB5-RE-2090 |  | Noise Enclosure Remove Steel Frame GL A-D | level of effort | 6d | 2016-01-18 A | 2016-03-28 A | 822-SM-VB5-RE-2080, 822-SM-VB5-RE-2090B FF | 100% | 2015-12-14 | 2015-12-19 |  |
| 822-SM-VB5-RE-2090A |  | Zone 6 - North elevation - Clear noise enclosure |  | 30d | 2016-01-18 A | 2016-03-21 A | 822-SM-VB5-RE-2090 SS | 100% | 2016-01-18 | 2016-02-22 |  |
| 822-SM-VB5-RE-2090B |  | Zone 4 - East elevation - Clear noise enclosure |  | 6d | 2016-02-29 A | 2016-03-28 A | 822-SM-VB5-RE-2090A | 100% | 2016-02-22 | 2016-02-27 |  |
|  | 20 | **GF-U1** |  |  | 2015-10-31 | 2017-03-25 |  |  |  |  |  |
| 822-SM-VB5-FW-2010 |  | G/F Wall Painting GL/ D-F |  | 6d | 2015-10-31 A | 2015-11-06 A |  | 100% | 2015-11-02 | 2015-11-07 |  |
| 822-SM-VB5-L1-20130 |  | G/F - U1 Construction GL3-4 |  | 15d | 2015-11-02 A | 2015-11-18 A | 822-SM-VB5-L1D-2000 FF+9d | 100% |  |  |  |
| 822-SM-VB5-FW-2020 |  | G/F DC Access Date GL/ D-F | milestone | 0d | 2015-11-06 A | 2015-11-06 A | 822-SM-VB5-FW-2010 | 100% | 2015-11-07 | 2015-11-07 |  |
| 822-SM-VB5-L1-20130A |  | G/F - U1 Construction GL3-4 Stairs |  | 43d | 2016-01-10 A | 2016-02-29 A | 822-SM-VB5-RC-2000 | 100% | 2016-02-01 | 2016-03-21 |  |
| 822-SM-VB5-FW-2030 |  | Install G/F Access Hatch |  | 7d | 2017-02-20 A | 2017-03-25 A | 822-SM-V5-L1-MP-2060, 822-SM-V5-FW-M-1170D | 100% | 2017-03-15 | 2017-03-22 |  |
|  | 21 | **U1-U2** |  |  | 2015-10-02 | 2017-02-08 |  |  |  |  |  |
| 822-SM-VB5-L1D-2000 |  | U1-U2 Construction GL/ C-F 1-3 |  | 31d | 2015-10-02 A | 2015-11-07 A |  | 100% |  |  |  |
| 822-SM-VB5-FW-2100 |  | U1 Granolithic screed GL/ C-F 1-3 |  | 12d | 2015-11-09 A | 2015-11-21 A | 822-SM-VB5-FW-2020 | 100% |  |  |  |
| 822-SM-VB5-FW-2110 |  | U1 Wall Painting GL/ C-F 1-3 |  | 12d | 2015-11-16 A | 2015-11-28 A | 822-SM-VB5-FW-2100 FF+6d | 100% |  |  |  |
| 822-SM-VB5-L1D-2010 |  | U1-U2 Construction GL/ C-F 3-4 |  | 15d | 2015-11-19 A | 2015-12-05 A | 822-SM-VB5-L1-20130 | 100% |  |  |  |
| 822-SM-VB5-FW-2120 |  | U1 DC Access Date GL/ C-F | milestone | 0d | 2015-12-30 A | 2015-12-30 A | 822-SM-VB5-FW-2110, 822-SM-VB5-RC-2010 FF | 100% | 2015-12-26 | 2015-12-26 | W11 7 day no hols |
| 822-SM-VB5-L1D-2020 |  | Seal slab opening at TECS Room at U1 (EI/143) |  | 32d | 2016-03-23 A | 2016-04-28 A | 822-SM-VB5-L1-20130A | 100% |  |  |  |
| 822-SM-VB5-L1D-2040 |  | U1 - All saintary items in toilet |  | 12d | 2016-12-07 A | 2016-12-20 A | 822-SM-S-L6-MP-1090 | 100% | 2016-10-19 | 2016-11-01 |  |
| 822-SM-VB5-L1D-2030 |  | Install U1 Access Hatch |  | 4d | 2017-02-06 A | 2017-02-08 A | 822-SM-VB5-FW-2030 | 100% | 2017-03-23 | 2017-03-27 |  |

| ID | WBS | Activity | Type | Duration | Start | Finish | Predecessors | Complete | Remaining | Planned start | Planned finish | Total float | Free float | Calendar |
| --- | --- | --- | --- | --- | --- | --- | --- | --- | --- | --- | --- | --- | --- | --- |
|  | 22 | **U2-Roof** |  |  | 2015-11-30 | 2016-02-12 |  |  |  |  |  |  |  |  |
| 822-SM-VB5-RC-2000 |  | Roof Construction GL C-F |  | 20d | 2015-11-30 A | 2016-01-09 A | 822-SM-VB5-L1D-2010 FF+12d | 100% |  | 2015-11-30 | 2015-12-19 |  |  | W11 7 day no hols |
| 822-SM-VB5-RC-2010 |  | Parapet Construction GL A-C |  | 12d | 2015-12-14 A | 2016-02-12 A | 822-SM-VB5-RC-2000 FF+6d, 822-SM-VB5-RE-2090 FF | 100% |  | 2015-12-14 | 2015-12-26 |  |  | W11 7 day no hols |
| 822-SM-VB5-FW-3000 |  | U2 Granolithic screed GL/ D-F |  | 11d | 2015-12-28 A | 2016-01-21 A | 822-SM-VB5-FW-2100 | 100% |  | 2016-01-16 | 2016-01-28 |  |  |  |
| 822-SM-VB5-FW-3010 |  | U2 Wall Painting GL/ D-F |  | 11d | 2015-12-28 A | 2016-01-16 A | 822-SM-VB5-FW-3000 FF | 100% |  | 2016-01-16 | 2016-01-28 |  |  |  |
| 822-SM-VB5-FW-3020 |  | U2 DC Access Date GL/ D-F | milestone | 0d | 2016-01-26 A | 2016-01-26 A | 822-SM-VB5-FW-3010 FF-1d | 100% |  | 2016-01-09 | 2016-01-09 |  |  | W11 7 day no hols |
|  | 3 | **L1 to L3** |  |  | 2016-05-15 | 2017-04-04 |  |  |  |  |  |  |  |  |
| 822-SM-V5-L1-MP-2050 |  | Slab opening for Cable Riser at L3 in VB5 (EI/154) |  | 18d | 2016-05-15 A | 2016-08-15 A | 822-SM-VB5-L1D-2020 | 100% |  | 2016-07-27 | 2016-08-16 |  |  |  |
| 822-SM-V5-L1-MP-2010 |  | Backfill service duct wall / slab opening |  | 12d | 2016-07-25 A | 2017-04-04 A | 822-SM-S-L4-MP-1070, 822-SM-VB5-FW-1160 FF+3d | 100% |  | 2016-07-25 | 2016-08-06 |  |  |  |
| 822-SM-V5-L1-MP-2020 |  | Backfill L1 wall opening for small cells |  | 6d | 2016-07-25 A | 2016-09-01 A | 822-SM-V5-L1-MP-2010 SS, 822-SM-VB5-FW-1160 FF+3d | 100% |  | 2016-07-25 | 2016-07-30 |  |  |  |
| 822-SM-V5-L1-MP-2030 |  | Clear scaffolding materials from L3 |  | 6d | 2016-08-08 A | 2016-08-26 A |  | 100% |  | 2016-08-23 | 2016-08-29 |  |  |  |
| 822-SM-V5-L1-MP-2060 |  | Install L1 Access Hatch |  | 6d | 2017-02-13 A | 2017-02-17 A | 822-SM-V5-L1-MP-2030, 822-SM-V5-FW-M-1170F, 822-SM-V5-L1-MP-2020, 822-SM-V5-L1-MP-2010, 822-SM-V5-FW-M-1170H FF | 100% |  | 2017-03-08 | 2017-03-14 |  |  |  |
| 822-SM-V5-L1-MP-2040 |  | Install access platform at L1 +84.0 |  | 6d | 2017-03-14 A | 2017-03-20 A | 822-SM-V5-FW-M-1170F, 822-SM-V5-L1-MP-2030, 822-SM-VB5-L1D-2030 | 100% |  | 2017-04-04 | 2017-04-10 |  |  |  |
|  | 23 | **Finishing Works** |  |  | 2015-12-14 | 2017-06-17 |  |  |  |  |  |  |  |  |
| 822-SM-VB5-FW-1130 |  | Remaining Concrete Remedial Works (from U1 to roof, GL B-F) |  | 18d | 2015-12-14 A | 2016-08-15 A | 822-SM-VB5-FW-1140 FF-3d | 100% |  | 2015-12-14 | 2016-01-06 |  |  |  |
| 822-SM-VB5-FW-1150 |  | SM Shaft and VB5 Degree 2 works by others (period assumed) |  | 101d | 2016-01-11 A | 2016-08-30 A | 822-SM-VB5-FW-1140 | 100% |  | 2016-02-05 | 2016-06-02 |  |  |  |
| 822-SM-VB5-FW-1140 |  | Remaining VB5 ABWF Works from U1 to Roof (GL B-F) to Degree 1 |  | 11d | 2016-01-11 A | 2016-01-22 A | 822-SM-VB5-FW-2120 | 100% |  | 2016-01-16 | 2016-01-28 |  |  |  |
| 822-SM-VB5-FW-1210 |  | Modifications to Cable Drawpits (EI/150) |  | 78d | 2016-02-01 A | 2016-04-30 A | 822-SM-VB5-FW-1140 | 100% |  |  |  |  |  |  |
| 822-SM-VB5-FW-1190 |  | Additional works in VB5 Transformer Room A&B (EI/138) |  | 53d | 2016-02-15 A | 2016-04-15 A |  | 100% |  |  |  |  |  |  |
| 822-SM-V5-FW-M-1170N |  | Construct Stair well roof for ST?4, including Metal Door (EI/141) |  | 32d | 2016-03-01 A | 2016-11-30 A | 822-SM-VB5-FW-1190 | 100% |  | 2016-07-27 | 2016-09-01 |  |  |  |
| 822-SM-VB5-FW-1200 |  | Additional RC slab at Transformer Room B (EI/151) |  | 12d | 2016-04-18 A | 2016-04-30 A | 822-SM-VB5-FW-1190 | 100% |  |  |  |  |  |  |
| 822-SM-VB5-FW-1220 |  | Additional Lifting Eyes (EI/149) |  | 28d | 2016-04-28 A | 2016-05-30 A | 822-SM-VB5-FW-1200 | 100% |  |  |  |  |  |  |
| 822-SM-V5-FW-M-1170G |  | Install cat-ladder, access platform at U2 |  | 6d | 2016-06-06 A | 2016-06-11 A | 822-SM-EAP-MP-1030A SS, 822-SM-VB5-FW-1220 | 100% |  |  |  |  |  |  |
| 822-SM-V5-FW-M-1170B |  | Install roof drain |  | 6d | 2016-06-13 A | 2016-06-18 A | 822-SM-V5-FW-M-1170G | 100% |  |  |  |  |  |  |
| 822-SM-V5-FW-M-1170E |  | Seal up wall / slab opening for U1 and U2 (small ducts) |  | 12d | 2016-06-20 A | 2016-07-02 A |  | 100% |  |  |  |  |  |  |
| 822-SM-VB5-FW-1160 |  | SM Shaft and VB5 Degree 3 works by others (period assumed) |  | 30d | 2016-07-02 A | 2017-03-31 A | 822-SM-VB5-FW-1150 | 100% |  | 2016-08-02 | 2016-09-05 |  |  |  |
| 822-SM-V5-FW-M-1170C |  | Backfill service duct wall / slab opening at U1 & U2 |  | 12d | 2016-07-04 A | 2016-07-16 A | 822-SM-V5-FW-M-1170E | 100% |  |  |  |  |  |  |
| 822-SM-V5-FW-M-1170D |  | Seal up wall / slab opening for G/F |  | 12d | 2016-07-25 A | 2017-02-24 A | 822-SM-V5-FW-M-1170E FS+18d, 822-SM-V5-FW-M-1170C, 822-SM-VB5-FW-1160 FF+3d | 100% |  | 2016-07-25 | 2016-08-06 |  |  |  |
| 822-SM-V5-FW-M-1170F |  | Install arresting system |  | 12d | 2016-08-15 A | 2016-12-30 A | 822-SM-VB5-FW-1130 | 100% |  | 2016-08-19 | 2016-09-01 |  |  |  |
| 822-SM-V5-FW-M-1170O |  | Install door leaf |  | 12d | 2016-09-05 A | 2016-12-30 A | 822-SM-S-L7-MP-1100, 822-SM-S-L4-MP-1070 | 100% |  | 2016-07-04 | 2016-07-16 |  |  |  |
| 822-SM-V5-FW-M-1170R |  | Install cat ladder arresting system |  | 12d | 2016-11-16 A | 2016-11-30 A | 822-SM-VB5-FW-1130, 822-SM-V5-FW-M-1170F | 100% |  | 2016-10-14 | 2016-10-27 |  |  |  |
| 822-SM-V5-FW-M-1170S |  | G/F ABWF for Corridors |  | 12d | 2017-02-24 A | 2017-02-25 A | 822-SM-V5-FW-M-1170E FS+18d, 822-SM-V5-FW-M-1170C, 822-SM-VB5-FW-1160, 822-SM-S-L4-MP-1090 | 100% |  | 2017-03-22 | 2017-04-04 |  |  |  |
| 822-SM-V5-FW-M-1170T |  | G/F install fire rated ceiling |  | 12d | 2017-02-27 A | 2017-03-25 A | 822-SM-V5-FW-M-1170S, 822-SM-VB5-EW-1300 | 100% |  | 2017-04-05 | 2017-04-18 |  |  |  |
| 822-SM-V5-FW-M-1170P |  | Signage Installation |  | 12d | 2017-03-20 A | 2017-05-01 A | 822-SM-S-L7-MP-1100, 822-SM-S-L4-MP-1070, 822-SM-S-FW-1010, 822-SM-S-FW-1010 FF | 100% |  | 2017-04-04 | 2017-04-17 |  |  |  |
| 822-SM-VB5-FW-1180 |  | Undertake tests and pass Statutory Inspections |  | 72d | 2017-04-05 A | 2017-05-11 A | 822-SM-V5-L1-MP-2040, 822-SM-S-FW-1010, 822-SM-V5-FW-M-1170K, 822-SM-V5-FW-M-1170N, 822-SM-V5-L1-MP-2060, 822-SM-VB5-FW-2030, 822-SM-VB5-L1D-2030, 822-SM-VB5-EW-1300 | 100% |  | 2017-04-05 | 2017-06-27 |  |  |  |
| 822-SM-VB5-FW-1300 |  | Stone Work at Planter |  | 14d | 2017-05-01 A | 2017-05-16 A | 822-SM-S-L4-MP-1120 | 100% |  |  |  |  |  |  |
| 822-SM-VB5-FW-1320 |  | Rectify Defects (Wall painting, anchor bolts) |  | 42d | 2017-05-01 A | 2017-06-17 | 822-SM-S-L4-MP-1120 | 60% | 16d |  |  | 88d | 75d |  |
| 822-SM-VB5-FW-1310 |  | Chain link Fence and access gate at buttress wall |  | 13d | 2017-05-17 A | 2017-05-31 A | 822-SM-VB5-FW-1300 | 100% |  |  |  |  |  |  |

| ID | WBS | Activity | Type | Duration | Start | Finish | Predecessors | Complete | Remaining | Planned start | Planned finish | Total float | Free float | Calendar |
| --- | --- | --- | --- | --- | --- | --- | --- | --- | --- | --- | --- | --- | --- | --- |
|  | 4 | **VB5 External Works** |  |  | 2015-10-25 | 2017-09-29 |  |  |  |  |  |  |  |  |
| 822-SM-V5-FW-M-1170A |  | Waterproofing to roof |  | 30d | 2016-07-04 A | 2016-09-01 A | 822-SM-V5-FW-M-1170B FS+12d | 100% |  | 2016-07-04 | 2016-08-06 |  |  |  |
| 822-SM-VB5-EW-M-3020 |  | Remove substation |  | 6d | 2016-07-04 A | 2016-07-09 A |  | 100% |  |  |  |  |  |  |
| 822-SM-VB5-EW-M-3030 |  | Remove worker shelter |  | 12d | 2016-07-11 A | 2016-07-23 A | 822-SM-VB5-EW-M-3020 | 100% |  |  |  |  |  |  |
|  | 1 | **Roof Works** |  |  | 2016-03-28 | 2017-06-20 |  |  |  |  |  |  |  |  |
| 822-SM-VB5-EW-1010 |  | Mobilisation for roofing works |  | 10d | 2016-03-28 A | 2016-06-09 A | 822-SM-VB5-RC-2000 SS | 100% |  | 2016-04-01 | 2016-04-12 |  |  | W11 6 day site - no stoppage at CNY |
| 822-SM-VB5-EW-1020 |  | Roof leveling screed |  | 6d | 2016-05-27 A | 2016-06-20 A | 822-SM-VB5-EW-1010 | 100% |  | 2016-05-11 | 2016-05-17 |  |  | W11 6 day site - no stoppage at CNY |
| 822-SM-VB5-EW-1030 |  | Apply waterproof membrane | level of effort | 30d | 2016-07-04 A | 2016-08-06 A | 822-SM-VB5-EW-1030B FF | 100% |  | 2016-08-05 | 2016-09-08 |  |  | W11 6 day site - no stoppage at CNY |
| 822-SM-VB5-EW-1030A |  | Waterproofing GL A-C |  | 18d | 2016-07-04 A | 2016-08-20 A | 822-SM-VB5-EW-1020 SS, 822-SM-VB5-EW-1030 SS | 100% |  | 2016-08-05 | 2016-08-25 |  |  | W11 6 day site - no stoppage at CNY |
| 822-SM-VB5-EW-1030B |  | Waterproofing GL C-F |  | 18d | 2016-07-19 A | 2016-08-06 A | 822-SM-VB5-EW-1030A FF | 100% |  | 2016-08-19 | 2016-09-08 |  |  | W11 6 day site - no stoppage at CNY |
| 822-SM-VB5-EW-1040 |  | Apply Insulation Board |  | 3d | 2016-08-22 A | 2016-10-25 A | 822-SM-VB5-EW-1020, 822-SM-VB5-EW-1030B FS+1d, 822-SM-V5-FW-M-1170A | 100% |  | 2016-08-25 | 2016-08-27 |  |  | W11 6 day site - no stoppage at CNY |
| 822-SM-VB5-EW-1050 |  | Top Screed |  | 3d | 2016-08-22 A | 2016-09-01 A | 822-SM-VB5-EW-1040 | 100% |  | 2016-08-29 | 2016-08-31 |  |  | W11 6 day site - no stoppage at CNY |
| 822-SM-VB5-EW-1120 |  | Roof Copping |  | 12d | 2017-02-10 A | 2017-02-17 A | 822-SM-V5-FW-M-1170F, 822-SM-V5-FW-M-1170H FF+7d, 822-SM-V5-FW-M-1170R | 100% |  | 2017-02-02 | 2017-02-15 |  |  |  |
| 822-SM-VB5-EW-1300 |  | Install RF Sliding Hatch |  | 4d | 2017-02-10 A | 2017-02-17 A | 822-SM-VB5-L1D-2030 | 100% |  | 2017-03-28 | 2017-03-31 |  |  |  |
| 822-SM-VB5-EW-1070 |  | Install Greeen Roof for VB5 |  | 18d | 2017-04-15 A | 2017-06-20 | 822-SM-VB5-EW-1050, 822-SM-S-L7-1070, 822-SM-S-L6-1070, 822-SM-VB5-EW-1120 | 20% | 18d | 2017-04-01 | 2017-04-21 | -1088.12d | 0d | W11 6 day site - no stoppage at CNY |
|  | 2 | **Building Connections and Facade** |  |  | 2016-02-01 | 2017-09-19 |  |  |  |  |  |  |  |  |
| 822-SM-VB5-EW-1080 |  | Erect external scaffolding for Facade |  | 90d | 2016-02-01 A | 2016-03-30 A | 822-SM-VB5-EW-1240A FS-2d | 100% |  | 2016-04-01 | 2016-07-14 |  |  | W11 6 day site - no stoppage at CNY |
| 822-SM-VB5-EW-1250B |  | Zone 6 - North elevation - Waterproofing and backfill to bottom of CLP drawpit |  | 6d | 2016-03-01 A | 2016-03-21 A | 822-SM-VB5-EW-1250A | 100% |  | 2016-04-05 | 2016-04-11 |  |  |  |
| 822-SM-VB5-EW-1240 |  | Strip building falsework | level of effort | 12d | 2016-03-22 A | 2016-03-31 A | 822-SM-VB5-EW-1240A SS | 100% |  | 2016-04-01 | 2016-04-14 |  |  | W11 6 day site - no stoppage at CNY |
| 822-SM-VB5-EW-1240A |  | Zone 4 - East elevation - Clear office container |  | 12d | 2016-03-22 A | 2016-03-31 A | 822-SM-VB5-RE-2090A | 100% |  | 2016-04-01 | 2016-04-14 |  |  |  |
| 822-SM-VB5-EW-1250 |  | Level capping beams and connect services (-Superseded-) | level of effort | 78d | 2016-03-22 A | 2017-06-27 | 822-SM-VB5-EW-1250A SS |  | 24d | 2016-04-01 | 2016-06-30 | 111d | 0d | W11 6 day site - no stoppage at CNY |
| 822-SM-VB5-EW-1250A |  | Zone 6 - North elevation - Break existing pavement + pilecap |  | 12d | 2016-03-22 A | 2016-04-04 A | 822-SM-VB5-RE-2090A | 100% |  | 2016-04-01 | 2016-04-14 |  |  |  |
| 822-SM-VB5-EW-1250C |  | Zone 4 - East elevation - Break existing pavement + pilecap |  | 12d | 2016-03-24 A | 2016-04-30 A | 822-SM-VB5-EW-1240B | 100% |  | 2016-04-01 | 2016-04-14 |  |  | W11 6 day site - no stoppage at CNY |
| 822-SM-VB5-EW-1240B |  | Zone 4 - East elevation - Modification of site access |  | 12d | 2016-03-25 A | 2016-03-31 A | 822-SM-VB5-RE-2090B, 822-SM-VB5-EW-1240 FF | 100% |  | 2016-04-01 | 2016-04-14 |  |  | W11 6 day site - no stoppage at CNY |
| 822-SM-VB5-EW-1250D |  | Zone 4 - East elevation - Waterproofing and backfill to CLP drawpit |  | 6d | 2016-03-30 A | 2016-04-07 A | 822-SM-VB5-EW-1080 | 100% |  | 2016-04-25 | 2016-04-30 |  |  | W11 6 day site - no stoppage at CNY |
| 822-SM-VB5-EW-1250F |  | Zone 5 - South Elevation - Waterproofing and backfill |  | 6d | 2016-04-01 A | 2016-04-11 A | 822-SM-VB5-EW-1250E | 100% |  | 2016-05-09 | 2016-05-14 |  |  |  |
| 822-SM-VB5-EW-1100 |  | External painting (-Superseded-) |  | 24d | 2016-05-23 A | 2017-08-29 | 822-SM-VB5-EW-1090 FF+12d | 5% | 24d | 2016-08-10 | 2016-09-06 | 87d | 0d | W11 6 day site - no stoppage at CNY |
| 822-SM-VB5-EW-1250E |  | Zone 5 - South Elevation - Break existing pavement + pilecap |  | 12d | 2016-05-23 A | 2016-06-30 A | 822-SM-VB5-EW-1250C | 100% |  | 2016-05-02 | 2016-05-14 |  |  |  |
| 822-SM-VB5-EW-1250H |  | Zone 6 - West Elevation - Remove CLP temporary substation |  | 12d | 2016-06-20 A | 2016-07-10 A | 822-SM-VB5-EW-1180E, 822-SM-VB5-EW-1250G | 100% |  | 2016-06-20 | 2016-07-02 |  |  | W11 6 day site - no stoppage at CNY |
| 822-SM-V5-FW-M-1170J |  | Modify scaffolding for lourve installation |  | 12d | 2016-07-04 A | 2016-07-16 A | 822-SM-V5-FW-M-1170E | 100% |  |  |  |  |  |  |
| 822-SM-VB5-EW-M-3010 |  | Break existing pilecap |  | 12d | 2016-07-25 A | 2016-08-25 A | 822-SM-VB5-EW-M-3030, 822-SM-VB5-FW-1210 | 100% |  | 2016-07-25 | 2016-08-06 |  |  |  |
| 822-SM-V5-FW-M-1170H |  | Install lourve and fins |  | 86d | 2016-08-15 A | 2017-01-07 A | 822-SM-V5-FW-M-1170J FS+12d | 100% |  | 2016-08-15 | 2016-11-22 |  |  |  |
| 822-SM-VB5-EW-M-3040 |  | Construct dog-house adjacent to substation |  | 12d | 2016-09-15 A | 2016-09-30 A | 822-SM-VB5-EW-M-3020 FS+24d, 822-SM-VB5-EW-M-3010 | 100% |  | 2016-09-01 | 2016-09-14 |  |  |  |
| 822-SM-V5-FW-M-1170K |  | Remove scaffolding after lourve installation |  | 12d | 2017-01-09 A | 2017-01-14 A | 822-SM-V5-FW-M-1170H FF+7d, 822-SM-VB5-EW-M-3040 | 100% |  | 2017-02-02 | 2017-02-15 |  |  |  |
| 822-SM-V5-FW-M-1170L |  | Concrete remedial works to external wall after scaffolding removal |  | 12d | 2017-01-09 A | 2017-01-14 A | 822-SM-V5-FW-M-1170K | 100% |  | 2017-02-16 | 2017-03-01 |  |  |  |
| 822-SM-V5-FW-M-1170M |  | External wall paint |  | 18d | 2017-01-09 A | 2017-01-25 A | 822-SM-V5-FW-M-1170L FF+12d, 822-SM-V5-FW-M-1170Q FF+12d | 100% |  | 2017-02-23 | 2017-03-15 |  |  |  |
| 822-SM-V5-FW-M-1170Q |  | Cladding for two CLP Tx Rooms |  | 12d | 2017-02-16 A | 2017-02-24 A | 822-SM-V5-FW-M-1170K | 100% |  | 2017-02-16 | 2017-03-01 |  |  |  |
| 822-SM-VB5-EW-1090 |  | Install external louvers and alumnium fins (-Superseded-) |  | 66d | 2017-05-31 | 2017-08-15 | 822-SM-VB5-EW-1030B SS+12d |  |  |  |  | 87d | 0d | W11 6 day site - no stoppage at CNY |
| 822-SM-VB5-EW-1250G |  | Zone 6 - West Elevation - Assume Permant Power at Shing Mun (-Superseded-) | milestone | 0d | 2017-05-31 | 2017-05-31 |  |  |  |  |  | 123d | 12d | W11 6 day site - no stoppage at CNY |
| 822-SM-VB5-FW-1170 |  | VB5 Finishing works after DC (outstanding Works) (-Superseded-) |  | 24d | 2017-05-31 | 2017-06-27 | 822-SM-VB5-FW-1160 |  |  |  |  | 159d |  |  |
| 822-SM-VB5-EW-1250I |  | Zone 6 - West Elevation - Waterproofing and backfill (-Superseded-) |  | 6d | 2017-06-14 | 2017-06-20 | 822-SM-VB5-EW-1250H |  |  |  |  | 111d | 0d |  |
| 822-SM-VB5-EW-1250J |  | Zone 6 - West Elevation - Break existing pavement + pilecap (-Superseded-) |  | 6d | 2017-06-21 | 2017-06-27 | 822-SM-VB5-EW-1250I, 822-SM-VB5-EW-1250 FF |  |  |  |  | 111d | 0d |  |
| 822-SM-VB5-EW-1110 |  | Dismantle and remove external scaffold (-Superseded-) |  | 24d | 2017-08-23 | 2017-09-19 | 822-SM-VB5-EW-1100 FS-6d |  |  |  |  | 87d |  | W11 6 day site - no stoppage at CNY |

| ID | WBS | Activity | Type | Duration | Start | Finish | Predecessors | Complete | Remaining | Planned start | Planned finish | Total float | Free float | Constraint | Calendar |
| --- | --- | --- | --- | --- | --- | --- | --- | --- | --- | --- | --- | --- | --- | --- | --- |
|  | 3 | **Roads and Drainage** |  |  | 2016-03-01 | 2017-09-13 |  |  |  |  |  |  |  |  |  |
| 822-SM-VB5-BS-0010 |  | TTM - Presentation at SLG additonal bus shelter (EI/155) |  | 45d | 2017-04-05 A | 2017-05-19 A | 822-SM-TTM-MP-0240A | 100% |  | 2017-04-05 | 2017-05-26 |  |  |  |  |
| 822-SM-VB5-BS-0020 |  | TTM - Approval and Endorsement of TTMS at SLG additonal bus shelter (EI/155) |  | 14d | 2017-05-20 A | 2017-06-14 | 822-SM-VB5-BS-0010 | 10% | 13d | 2017-05-20 | 2017-06-05 | 20d | 0d |  |  |
| 822-SM-TTM-MP-EIXX1 |  | EI TBC - Reinstate of Pedestrian Crossing and EMSD | milestone | 0d | 2017-05-31 | 2017-05-31 |  |  |  |  |  | -3d | 183d | start on 2017-05-27 |  |
| 822-SM-TTM-MP-EIXX2 |  | EI TBC - Reinstate of Pedestrian Crossing and EMSD |  | 39d | 2017-06-14 | 2017-07-28 | 822-SM-TTM-MP-1450B FS+4d |  |  |  |  | 13d | 0d |  |  |
| 822-SM-VB5-BS-0030 |  | TTM - Request for EMSD Quotation additonal bus shelter (EI/155) |  | 5d | 2017-06-15 | 2017-06-20 | 822-SM-VB5-BS-0020, 822-SM-VB5-BS-0020 FF |  |  |  |  | 20d | 0d |  |  |
| 822-SM-VB5-BS-0080 |  | TTM - RWA Submission and Approval (With CXP C000901) additonal bus shelter (EI/155) |  | 14d | 2017-06-21 | 2017-07-06 | 822-SM-VB5-BS-0030 |  |  |  |  | 20d | 0d |  |  |
| 822-SM-VB5-BS-0090 |  | TTM - Ready for Implementation of TTM additonal bus shelter (EI/155) | milestone | 0d | 2017-07-06 | 2017-07-06 | 822-SM-VB5-BS-0080, 822-SM-VB5-BS-0080 SF |  |  |  |  | 20d | 0d |  |  |
| 822-SM-VB5-BS-0100 |  | Additional bus shelter in Cheung Shan Estate Rd West (EI/155) |  | 52d | 2017-07-07 | 2017-09-05 | 822-SM-VB5-BS-0090, 822-SM-TTM-MP-1450A |  |  |  |  | 20d | 7d |  |  |
| 822-SM-TTM-MP-EIXX3 |  | EI TBC - Road Re-surfacing |  | 40d | 2017-07-29 | 2017-09-13 | 822-SM-TTM-MP-EIXX2 |  |  |  |  | 13d | 0d |  |  |
|  | 4 | **External Services** |  |  | 2016-03-01 | 2017-08-08 |  |  |  |  |  |  |  |  |  |
| 822-SM-VB5-EW-1180 |  | Power Draw Pit & Duct/Earth Mat (65m +4 Pits) (-Superseded-) | level of effort | 89d | 2016-03-01 A | 2017-07-18 | 822-SM-VB5-EW-1180A SS |  | 42d | 2016-04-05 | 2016-07-16 | 111d | 0d |  | W11 6 day site - no stoppage at CNY |
| 822-SM-VB5-EW-1180A |  | Zone 6 - North elevation - Construct CLP drawpit (3 nos) and G.I pipe |  | 18d | 2016-03-01 A | 2016-03-30 A | 822-SM-VB5-EW-1250B | 100% |  | 2016-04-05 | 2016-04-25 |  |  |  |  |
| 822-SM-VB5-EW-1180C |  | Zone 4 - East elevation - Construct CLP drawpit (1 no) and G.I pipe |  | 18d | 2016-03-31 A | 2016-04-07 A | 822-SM-VB5-EW-1250D | 100% |  | 2016-05-02 | 2016-05-21 |  |  |  | W11 6 day site - no stoppage at CNY |
| 822-SM-VB5-EW-1180J |  | Zone 7 - Triangular area - Break existing pavement |  | 12d | 2016-04-12 A | 2016-06-30 A | 822-SM-VB5-EW-1180I FS+2d | 100% |  | 2016-04-19 | 2016-05-02 |  |  |  | W11 6 day site - no stoppage at CNY |
| 822-SM-VB5-EW-1180K |  | Zone 7 - Triangular area - Drill borehole (assume CLP 132KV diverted) |  | 18d | 2016-04-16 A | 2016-04-29 A | 822-SM-VB5-EW-1180J FF+12d | 100% |  | 2016-04-26 | 2016-05-16 |  |  |  | W11 6 day site - no stoppage at CNY |
| 822-SM-VB5-EW-1180L |  | Zone 7 - Triangular area - Install earth mat |  | 18d | 2016-04-16 A | 2016-05-25 A | 822-SM-VB5-EW-1180K FF+6d | 100% |  | 2016-05-06 | 2016-05-26 |  |  |  | W11 6 day site - no stoppage at CNY |
| 822-SM-VB5-EW-1180D |  | Zone 4 - East elevation - Excavation of CLP trench and install ducting |  | 18d | 2016-05-02 A | 2016-05-21 A | 822-SM-VB5-EW-1150A FF+6d, 822-SM-VB5-EW-1180C | 100% |  |  |  |  |  |  | W11 6 day site - no stoppage at CNY |
| 822-SM-VB5-EW-1180E |  | Zone 5 - South Elevation - Excavation for CLP ducting trench (-Superseded-) |  | 12d | 2016-06-30 A | 2017-06-13 | 822-SM-VB5-EW-1250F |  | 12d | 2016-08-04 | 2016-08-17 | 111d | 0d |  | W11 6 day site - no stoppage at CNY |
| 822-SM-VB5-EW-1200B |  | Zone 4 - East elevation - Excavation of fresh and salt watermain (-Superseded-) |  | 12d | 2016-06-30 A | 2017-06-13 | 822-SM-VB5-EW-1180D FF+6d |  | 12d | 2016-07-27 | 2016-08-09 | 123d | 0d |  | W11 6 day site - no stoppage at CNY |
| 822-SM-VB5-EW-1180B |  | Zone 6 - North elevation - Construct LV power duct (-Superseded-) |  | 6d | 2017-05-31 | 2017-06-06 | 822-SM-VB5-EW-1180A |  |  |  |  | 165d | 6d |  |  |
| 822-SM-VB5-EW-1180I |  | Zone 7 - Triangular area - Assume CLP Divert 132KV Cable (-Superseded-) | milestone | 0d | 2017-05-31 | 2017-05-31 |  |  |  |  |  | 128d | 0d |  | W11 6 day site - no stoppage at CNY |
| 822-SM-VB5-EW-1200A |  | Zone 6 - North elevation - Waterpipe to irrigation point (-Superseded-) |  | 12d | 2017-05-31 | 2017-06-13 | 822-SM-VB5-EW-1180A |  |  |  |  | 159d | 0d |  |  |
| 822-SM-VB5-EW-1200C |  | Zone 4 - East elevation - Install fresh and salt watermain (-Superseded-) |  | 24d | 2017-05-31 | 2017-06-27 | 822-SM-VB5-EW-1180D, 822-SM-VB5-EW-1200B SS+6d |  |  |  |  | 123d | 0d |  | W11 6 day site - no stoppage at CNY |
| 822-SM-VB5-EW-1190 |  | Salt Water Mains along Chung Shan Estate Rd (50m) (-Superseded-) |  | 47d | 2017-06-01 | 2017-07-25 | 822-SM-VB5-EW-1200A FF, 822-SM-VB5-EW-1200B FF, 822-SM-VB5-EW-1200C FF, 822-SM-VB5-EW-1200D FF, 822-SM-VB5-EW-1200E FF, 822-SM-VB5-EW-1200F FF |  |  |  |  | 123d | 0d |  | W11 6 day site - no stoppage at CNY |
| 822-SM-VB5-EW-1200 |  | Fresh Water Mains along Chung Shan Estate Rd Connect to FW902 (-Superseded-) |  | 47d | 2017-06-01 | 2017-07-25 | 822-SM-VB5-EW-1190 SS, 822-SM-VB5-EW-1200A FF, 822-SM-VB5-EW-1200B FF, 822-SM-VB5-EW-1200C FF, 822-SM-VB5-EW-1200D FF, 822-SM-VB5-EW-1200E FF, 822-SM-VB5-EW-1200F FF |  |  |  |  | 123d | 0d |  | W11 6 day site - no stoppage at CNY |
| 822-SM-VB5-EW-1180M |  | Zone 7 - Triangular area - Construct LV power duct (-Superseded-) |  | 12d | 2017-06-02 | 2017-06-15 | 822-SM-VB5-EW-1180L |  |  |  |  | 128d | 0d |  | W11 6 day site - no stoppage at CNY |
| 822-SM-VB5-EW-1180N |  | Zone 7 - Triangular area - Install and backfill CLP ducting (-Superseded-) |  | 12d | 2017-06-09 | 2017-06-22 | 822-SM-VB5-EW-1180M FF+6d, 822-SM-VB5-EW-1230B FF+6d, 822-SM-VB5-EW-1180 FF |  |  |  |  | 128d | 0d |  | W11 6 day site - no stoppage at CNY |
| 822-SM-VB5-EW-1180F |  | Zone 5 - South Elevation - Install and backfill CLP ducting (-Superseded-) |  | 12d | 2017-06-14 | 2017-06-27 | 822-SM-VB5-EW-1180E |  |  |  |  | 111d | 0d |  | W11 6 day site - no stoppage at CNY |
| 822-SM-VB5-EW-1180G |  | Zone 6 - West Elevation - Excavation for CLP ducting trench (-Superseded-) |  | 12d | 2017-06-28 | 2017-07-11 | 822-SM-VB5-EW-1250J |  |  |  |  | 111d | 0d |  | W11 6 day site - no stoppage at CNY |
| 822-SM-VB5-EW-1200D |  | Zone 4 - East elevation - Construction of water meter cabinet (-Superseded-) |  | 6d | 2017-06-28 | 2017-07-04 | 822-SM-VB5-EW-1200C |  |  |  |  | 141d | 18d |  | W11 6 day site - no stoppage at CNY |
| 822-SM-VB5-EW-1200E |  | Zone 5 - South Elevation - Construct gully (-Superseded-) |  | 6d | 2017-06-28 | 2017-07-04 | 822-SM-VB5-EW-1180F |  |  |  |  | 111d | 0d |  | W11 6 day site - no stoppage at CNY |
| 822-SM-VB5-EW-1200F |  | Zone 5 - South Elevation - Install fresh and salt watermain (-Superseded-) |  | 18d | 2017-07-05 | 2017-07-25 | 822-SM-VB5-EW-1200E |  |  |  |  | 111d | 0d |  | W11 6 day site - no stoppage at CNY |
| 822-SM-VB5-EW-1180H |  | Zone 6 - West Elevation - Install and backfill CLP ducting (-Superseded-) |  | 6d | 2017-07-12 | 2017-07-18 | 822-SM-VB5-EW-1180G, 822-SM-VB5-EW-1180 FF |  |  |  |  | 111d | 0d |  | W11 6 day site - no stoppage at CNY |
| 822-SM-VB5-EW-1210 |  | Salt Water Mains within site boundary (by DC) (-Superseded-) |  | 12d | 2017-07-26 | 2017-08-08 | 822-SM-VB5-EW-1190 |  |  |  |  | 123d | 0d |  | W11 6 day site - no stoppage at CNY |
| 822-SM-VB5-EW-1220 |  | Fresh Water Mains within site boundary (by DC) (-Superseded-) |  | 12d | 2017-07-26 | 2017-08-08 | 822-SM-VB5-EW-1200, 822-SM-VB5-EW-1210 SS |  |  |  |  | 123d |  |  | W11 6 day site - no stoppage at CNY |

| ID | WBS | Activity | Type | Duration | Start | Finish | Predecessors | Complete | Planned start | Planned finish | Total float | Free float | Calendar |
| --- | --- | --- | --- | --- | --- | --- | --- | --- | --- | --- | --- | --- | --- |
|  | 1 | **Storm Water System** |  |  | 2017-05-31 | 2017-08-08 |  |  |  |  |  |  |  |
| 822-SM-VB5-EW-1130 |  | Storm Drainage inside site boundry (-Superseded-) | level of effort | 60d | 2017-05-31 | 2017-08-08 | 822-SM-VB5-EW-1130C FF, 822-SM-VB5-EW-1130D FF, 822-SM-VB5-EW-1130G FF |  |  |  | 111d | 0d | W11 6 day site - no stoppage at CNY |
| 822-SM-VB5-EW-1130A |  | Zone 6 - North elevation - Construct 225 surface channel (-Superseded-) |  | 6d | 2017-05-31 | 2017-06-06 | 822-SM-VB5-EW-1180A, 822-SM-VB5-EW-1130 SS |  |  |  | 165d | 6d | W11 6 day site - no stoppage at CNY |
| 822-SM-VB5-EW-1130E |  | Zone 7 - Triangular area - Construct 225 surface channel (-Superseded-) |  | 11d | 2017-06-17 | 2017-06-29 | 822-SM-VB5-EW-1180N FF+6d, 822-SM-VB5-EW-1230B |  |  |  | 128d | 0d |  |
| 822-SM-VB5-EW-1130F |  | Zone 8 - Slope side - CLP divert 11KV cable above surface channel (-Superseded-) |  | 5d | 2017-06-28 | 2017-07-03 | 822-SM-VB5-EW-1180G SS, 822-SM-VB5-EW-1180N SS |  |  |  | 112d | 0d | W11 6 day site - no stoppage at CNY |
| 822-SM-VB5-EW-1130G |  | Zone 8 - Slope side - Reinstate surface channel (-Superseded-) |  | 24d | 2017-07-04 | 2017-07-31 | 822-SM-VB5-EW-1130F |  |  |  | 112d | 0d | W11 6 day site - no stoppage at CNY |
| 822-SM-VB5-EW-1130B |  | Zone 4 - East elevation - Construct 225 surface channel (-Superseded-) |  | 6d | 2017-07-05 | 2017-07-11 | 822-SM-VB5-EW-1160B |  |  |  | 123d | 0d |  |
| 822-SM-VB5-EW-1130C |  | Zone 6 - West Elevation - Construct 500 surface channel (-Superseded-) |  | 12d | 2017-07-26 | 2017-08-08 | 822-SM-VB5-EW-1180H FS+6d |  |  |  | 111d | 0d | W11 6 day site - no stoppage at CNY |
| 822-SM-VB5-EW-1130D |  | Zone 6 - West Elevation - Construct 300 + 150 surface channel (-Superseded-) |  | 12d | 2017-07-26 | 2017-08-08 | 822-SM-VB5-EW-1130C FF |  |  |  | 111d | 0d |  |
|  | 2 | **Foul Water System** |  |  | 2016-04-02 | 2017-01-21 |  |  |  |  |  |  |  |
| 822-SM-VB5-EW-1150A |  | Zone 4 - East elevation - Trial pit for drainage and sewer alignment |  | 12d | 2016-04-02 A | 2016-04-15 A | 822-SM-VB5-EW-1180C FF+6d | 100% |  |  |  |  | W11 6 day site - no stoppage at CNY |
| 822-SM-VB5-EW-1150 |  | Foul Drain and Manhole |  | 78d | 2016-04-07 A | 2017-01-21 A | 822-SM-VB5-EW-1150A FF | 100% | 2016-04-01 | 2016-06-17 |  |  | 05 LAL 7 D/W (No Holiday) |
|  | 3 | **Roadworks and Paving** |  |  | 2017-06-14 | 2017-08-22 |  |  |  |  |  |  |  |
| 822-SM-VB5-EW-1160 |  | Kerbing and Paving (135m and 347m2) (-Superseded-) | level of effort | 48d | 2017-06-14 | 2017-08-08 | 822-SM-VB5-EW-1160A SS |  |  |  | 123d | 0d | W11 6 day site - no stoppage at CNY |
| 822-SM-VB5-EW-1160A |  | Zone 6 - North elevation - Road kerb and pavement (-Superseded-) |  | 12d | 2017-06-14 | 2017-06-27 | 822-SM-VB5-EW-1200A, 822-SM-VB5-EW-1180B, 822-SM-VB5-EW-1130A |  |  |  | 159d |  |  |
| 822-SM-VB5-EW-1160B |  | Zone 4 - East elevation - Install PCCW ducting (-Superseded-) |  | 12d | 2017-06-21 | 2017-07-04 | 822-SM-VB5-EW-1200C FF+6d |  |  |  | 123d | 0d |  |
| 822-SM-VB5-EW-1160C |  | Zone 4 - East elevation - Construct LV drawpit and ducting (-Superseded-) |  | 12d | 2017-06-28 | 2017-07-11 | 822-SM-VB5-EW-1130B FF |  |  |  | 123d | 0d |  |
| 822-SM-VB5-EW-1160H |  | Zone 7 - Triangular arean - Road kerb and pavement (-Superseded-) |  | 17d | 2017-06-30 | 2017-07-19 | 822-SM-VB5-EW-1130E |  |  |  | 134d | 6d |  |
| 822-SM-VB5-EW-1170 |  | Fencing, Railing and Signage (176m + 15nr) (-Superseded-) | level of effort | 45d | 2017-06-30 | 2017-08-21 | 822-SM-VB5-EW-1170A SS, 822-SM-VB5-EW-1170D SS |  |  |  | 112d | 0d | W11 6 day site - no stoppage at CNY |
| 822-SM-VB5-EW-1170A |  | Zone 7 - Triangular area - Construct footing for fencing and site gate (-Superseded-) |  | 11d | 2017-06-30 | 2017-07-12 | 822-SM-VB5-EW-1130E |  |  |  | 128d | 0d | W11 6 day site - no stoppage at CNY |
| 822-SM-VB5-EW-1160D |  | Zone 4 - East elevation - Construct road curb (-Superseded-) |  | 12d | 2017-07-12 | 2017-07-25 | 822-SM-VB5-EW-1130B, 822-SM-VB5-EW-1160C |  |  |  | 123d | 0d |  |
| 822-SM-VB5-EW-1170B |  | Zone 7 - Triangular area - Install fencing and site gate (-Superseded-) |  | 12d | 2017-07-13 | 2017-07-26 | 822-SM-VB5-EW-1170A |  |  |  | 128d | 0d | W11 6 day site - no stoppage at CNY |
| 822-SM-VB5-EW-1170C |  | Zone 7 - Triangular area - Install exercise equipment area (-Superseded-) |  | 17d | 2017-07-14 | 2017-08-02 | 822-SM-VB5-EW-1170B FF+6d, 822-SM-VB5-EW-1160H FF+6d, 822-SM-VB5-EW-1230C |  |  |  | 128d |  | W11 6 day site - no stoppage at CNY |
| 822-SM-VB5-EW-1170D |  | Zone 8 - Slope side - Construct catchpit (-Superseded-) |  | 12d | 2017-07-18 | 2017-07-31 | 822-SM-VB5-EW-1130G FF |  |  |  | 112d | 0d | W11 6 day site - no stoppage at CNY |
| 822-SM-VB5-EW-1160E |  | Zone 4 - East elevation - Backfilll and Footpath pavement (-Superseded-) |  | 18d | 2017-07-19 | 2017-08-08 | 822-SM-VB5-EW-1160D FF+12d, 822-SM-VB5-EW-1160F FF, 822-SM-VB5-EW-1160 FF |  |  |  | 123d |  |  |
| 822-SM-VB5-EW-1170E |  | Zone 8 - Slope side - Fencing at buttress wall (-Superseded-) |  | 24d | 2017-07-25 | 2017-08-21 | 822-SM-VB5-EW-1230D SS, 822-SM-VB5-EW-1170 FF |  |  |  | 112d |  | W11 6 day site - no stoppage at CNY |
| 822-SM-VB5-EW-1160F |  | Zone 5 - South Elevation - Construct road curb (-Superseded-) |  | 12d | 2017-07-26 | 2017-08-08 | 822-SM-VB5-EW-1200F |  |  |  | 111d | 0d |  |
| 822-SM-VB5-EW-1160G |  | Zone 5 - South Elevation - Backfilll and Footpath pavement (-Superseded-) |  | 18d | 2017-08-02 | 2017-08-22 | 822-SM-VB5-EW-1160F FF+12d |  |  |  | 111d |  |  |

| ID | WBS | Activity | Type | Duration | Start | Finish | Predecessors | Complete | Remaining | Planned start | Planned finish | Total float | Free float | Calendar |
| --- | --- | --- | --- | --- | --- | --- | --- | --- | --- | --- | --- | --- | --- | --- |
|  | 4 | **Landscaping** |  |  | 2016-06-20 | 2017-08-22 |  |  |  |  |  |  |  |  |
| 822-SM-VB5-EW-1230 |  | Hard and Soft Landscaping (Turfing 258m2 + Paving 192m2 + Shrubs) |  | 117d | 2016-06-20 A | 2017-07-29 | 822-SM-VB5-EW-1150 FF | 80% | 52d | 2016-07-27 | 2016-12-09 | 52d | 39d | W11 6 day site - no stoppage at CNY |
| 822-SM-VB5-EW-1230B |  | Zone 7 - Triangular area - Waterpipe to irrigation point (-Superseded-) |  | 12d | 2017-06-02 | 2017-06-15 | 822-SM-VB5-EW-1180M FF, 822-SM-VB5-EW-1180L |  |  |  |  | 128d | 0d | W11 6 day site - no stoppage at CNY |
| 822-SM-VB5-EW-1230C |  | Zone 7 - Triangular area - Construct planter wall (-Superseded-) |  | 11d | 2017-06-30 | 2017-07-12 | 822-SM-VB5-EW-1130E |  |  |  |  | 129d | 1d | W11 6 day site - no stoppage at CNY |
| 822-SM-VB5-EW-1230D |  | Zone 8 - Slope side - Install slope ladder (-Superseded-) |  | 12d | 2017-07-25 | 2017-08-07 | 822-SM-VB5-EW-1170D FF+6d |  |  |  |  | 112d | 0d | W11 6 day site - no stoppage at CNY |
| 822-SM-VB5-EW-1230A |  | Zone 6 - West Elevation - Construct planter wall (-Superseded-) |  | 12d | 2017-08-09 | 2017-08-22 | 822-SM-VB5-EW-1130C, 822-SM-VB5-EW-1130D |  |  |  |  | 111d |  | W11 6 day site - no stoppage at CNY |
|  | 5 | **Outstanding External Works** |  |  | 2015-10-25 | 2017-06-10 |  |  |  |  |  |  |  |  |
|  | 1 | **Site Clearance** |  |  | 2016-05-28 | 2016-08-31 |  |  |  |  |  |  |  |  |
| 822-SM-VB5-MP-2090B |  | Portion 1 - Removal of Temporary Works | level of effort | 7d | 2016-05-28 A | 2016-06-04 A | 822-SM-VB5-MP-2090B1 SS | 100% |  |  |  |  |  |  |
| 822-SM-VB5-MP-2090B1 |  | Portion 1 - Breaking of Noise Enclosure Concrete Pile Cap |  | 7d | 2016-05-28 A | 2016-06-04 A |  | 100% |  |  |  |  |  |  |
| 822-SM-VB5-MP-2090B2 |  | Portion 1 - Cutting of Pipe Pile to 2m below F.F.L |  | 14d | 2016-05-28 A | 2016-06-13 A | 822-SM-VB5-MP-2090B1 FF+6d | 100% |  |  |  |  |  |  |
| 822-SM-VB5-MP-2090B3 |  | Portion 1 - Backfill to 1m below F.F.L |  | 10d | 2016-06-14 A | 2016-06-24 A | 822-SM-VB5-MP-2090B2, 822-SM-VB5-MP-2090B FF | 100% |  |  |  |  |  |  |
| 822-SM-VB5-MP-1250H |  | Portion 3 - Removal of CLP Substation | level of effort | 31d | 2016-06-20 A | 2016-07-25 A | 822-SM-VB5-MP-1250H1 SS | 100% |  |  |  |  |  |  |
| 822-SM-VB5-MP-1250H1 |  | Portion 3 - Power Disconnection |  | 1d | 2016-06-20 A | 2016-06-20 A |  | 100% |  |  |  |  |  |  |
| 822-SM-VB5-MP-1250H2 |  | Portion 3 - Demobilization of CLP Transformer and Cable |  | 14d | 2016-06-23 A | 2016-07-08 A | 822-SM-VB5-MP-1250H1 FS+2d | 100% |  |  |  |  |  |  |
| 822-SM-VB5-MP-1250H3 |  | Portion 3 - Demolishing Existing Substation |  | 10d | 2016-07-09 A | 2016-07-20 A | 822-SM-VB5-MP-1250H2 | 100% |  |  |  |  |  |  |
| 822-SM-VB5-MP-1250H4 |  | Portion 3 - Removal Footing |  | 4d | 2016-07-21 A | 2016-07-25 A | 822-SM-VB5-MP-1250H3, 822-SM-VB5-MP-1250H FF | 100% |  |  |  |  |  |  |
| 822-SM-VB5-MP-1250K |  | Portion 3 - Removal of ELS | level of effort | 18d | 2016-07-26 A | 2016-08-25 A | 822-SM-VB5-MP-1250K1 SS | 100% |  | 2016-07-26 | 2016-08-15 |  |  |  |
| 822-SM-VB5-MP-1250K1 |  | Portion 3 - Cutting Waling |  | 2d | 2016-07-26 A | 2016-08-25 A | 822-SM-VB5-MP-1250H4 | 100% |  | 2016-07-26 | 2016-07-27 |  |  |  |
| 822-SM-VB5-MP-1250K2 |  | Portion 3 - Cutting Pipe Pile |  | 12d | 2016-08-05 A | 2016-08-25 A | 822-SM-VB5-MP-1250K1 | 100% |  | 2016-08-16 | 2016-08-29 |  |  |  |
| 822-SM-VB5-MP-1250K3 |  | Portion 3 - Backfill to Formation Level |  | 4d | 2016-08-26 A | 2016-08-31 A | 822-SM-VB5-MP-1250K2, 822-SM-VB5-MP-1250K FF | 100% |  | 2016-08-30 | 2016-09-02 |  |  |  |
|  | 2 | **Service Connection to Building** |  |  | 2015-10-25 | 2017-01-27 |  |  |  |  |  |  |  |  |
|  | 1 | **Drainage and Sewerage Connection** |  |  | 2016-05-28 | 2016-06-23 |  |  |  |  |  |  |  |  |
| 822-SM-VB5-MP-1150B |  | Portion 1 - Terminal Manholes | level of effort | 6d | 2016-05-28 A | 2016-06-03 A | 822-SM-VB5-MP-1150B1 SS | 100% |  |  |  |  |  |  |
| 822-SM-VB5-MP-1150B1 |  | Portion 1 - Construction of Manholes |  | 6d | 2016-05-28 A | 2016-06-03 A |  | 100% |  |  |  |  |  |  |
| 822-SM-VB5-MP-1150B2 |  | Portion 1 - Backfilling |  | 3d | 2016-06-04 A | 2016-06-07 A | 822-SM-VB5-MP-1150B1 | 100% |  |  |  |  |  |  |
| 822-SM-VB5-MP-1150B3 |  | Portion 1 - Extraction of Sheet pile |  | 2d | 2016-06-08 A | 2016-06-09 A | 822-SM-VB5-MP-1150B2, 822-SM-VB5-MP-1150B FF | 100% |  |  |  |  |  |  |
| 822-SM-VB5-MP-1130H |  | Portion 1 - Drainage Pipe to Site Boundary | level of effort | 12d | 2016-06-10 A | 2016-06-23 A | 822-SM-VB5-MP-1130H1 SS | 100% |  |  |  |  |  |  |
| 822-SM-VB5-MP-1130H1 |  | Portion 1 - Driving of Sheet pile and Excavation |  | 6d | 2016-06-10 A | 2016-06-16 A | 822-SM-VB5-MP-1150B3 | 100% |  |  |  |  |  |  |
| 822-SM-VB5-MP-1130H2 |  | Portion 1 - Installation of Pipe and Testing |  | 3d | 2016-06-17 A | 2016-06-20 A | 822-SM-VB5-MP-1130H1 | 100% |  |  |  |  |  |  |
| 822-SM-VB5-MP-1130H3 |  | Portion 1 - Backfilling |  | 2d | 2016-06-21 A | 2016-06-22 A | 822-SM-VB5-MP-1130H2 | 100% |  |  |  |  |  |  |
| 822-SM-VB5-MP-1130H4 |  | Portion 1 - Extraction of Sheet pile |  | 1d | 2016-06-23 A | 2016-06-23 A | 822-SM-VB5-MP-1130H3, 822-SM-VB5-MP-1130H FF | 100% |  |  |  |  |  |  |

| ID | WBS | Activity | Type | Duration | Start | Finish | Predecessors | Complete | Planned start | Planned finish |
| --- | --- | --- | --- | --- | --- | --- | --- | --- | --- | --- |
|  | 2 | **Water Connection** |  |  | 2016-06-25 | 2016-10-31 |  |  |  |  |
| 822-SM-VB5-MP-1200-1 |  | Portion 1 - Expose Connection Point for Inspection |  | 2d | 2016-06-25 A | 2016-06-27 A | 822-SM-VB5-MP-2090B3 | 100% |  |  |
| 822-SM-VB5-MP-1200-2 |  | Portion 1 - Confirm Alignment with WSD |  | 7d | 2016-06-28 A | 2016-07-05 A | 822-SM-VB5-MP-1200-1 | 100% |  |  |
| 822-SM-VB5-MP-1200D |  | Portion 1 - Water Meter Cabinet | level of effort | 14d | 2016-07-06 A | 2016-07-21 A | 822-SM-VB5-MP-1200D1 SS | 100% |  |  |
| 822-SM-VB5-MP-1200D1 |  | Portion 1 - Excavation |  | 5d | 2016-07-06 A | 2016-07-11 A | 822-SM-VB5-MP-1170F1 SS+10d | 100% |  |  |
| 822-SM-VB5-MP-1200H |  | Portion 1- Water Pipe (by 822) | level of effort | 37d | 2016-07-06 A | 2016-10-31 A | 822-SM-VB5-MP-1200H1 SS | 100% | 2016-07-06 | 2016-08-17 |
| 822-SM-VB5-MP-1200H1 |  | Portion 1- Water Pipe Procurement |  | 14d | 2016-07-06 A | 2016-08-22 A | 822-SM-VB5-MP-1200-2 | 100% | 2016-07-06 | 2016-07-21 |
| 822-SM-VB5-MP-1200D2 |  | Portion 1 - Construction of Carbinet |  | 6d | 2016-07-12 A | 2016-07-18 A | 822-SM-VB5-MP-1200D1 | 100% |  |  |
| 822-SM-VB5-MP-1200D3 |  | Portion 1 - Backfilling |  | 3d | 2016-07-19 A | 2016-07-21 A | 822-SM-VB5-MP-1200D2, 822-SM-VB5-MP-1200D FF | 100% |  |  |
| 822-SM-VB5-MP-1200G |  | Portion 1 - Water Pipe (by 855) | level of effort | 16d | 2016-07-22 A | 2016-10-12 A | 822-SM-VB5-MP-1200G1 SS | 100% | 2016-07-22 | 2016-08-09 |
| 822-SM-VB5-MP-1200G1 |  | Portion 1 - Laying of water pipe |  | 7d | 2016-07-22 A | 2016-08-31 A | 822-SM-VB5-MP-1130H4, 822-SM-VB5-MP-1200D3, 822-SM-VB5-MP-1170F1 | 100% | 2016-07-22 | 2016-07-29 |
| 822-SM-VB5-MP-1200H2 |  | Portion 1- Laying of Water Pipe and Testing |  | 7d | 2016-07-22 A | 2016-09-30 A | 822-SM-VB5-MP-1200H1 | 100% | 2016-07-22 | 2016-07-29 |
| 822-SM-VB5-MP-1200G2 |  | Portion 1 - Pending for WSD Inspection |  | 7d | 2016-09-01 A | 2016-09-24 A | 822-SM-VB5-MP-1200G1 | 100% | 2016-09-01 | 2016-09-08 |
| 822-SM-VB5-MP-1200G3 |  | Portion 1 - Backfilling |  | 2d | 2016-09-26 A | 2016-10-12 A | 822-SM-VB5-MP-1200G2, 822-SM-VB5-MP-1200G FF | 100% | 2016-09-09 | 2016-09-10 |
| 822-SM-VB5-MP-1200H4 |  | Portion 1- Pending for Water Connection by WSD |  | 14d | 2016-10-17 A | 2016-10-31 A | 822-SM-VB5-MP-1200H3, 822-SM-VB5-MP-1200H FF | 100% | 2016-10-03 | 2016-10-18 |
| 822-SM-VB5-MP-1200H3 |  | Portion 1- Backfilling |  | 2d | 2016-10-26 A | 2016-10-27 A | 822-SM-VB5-MP-1200H2 | 100% | 2016-09-30 | 2016-10-01 |
|  | 3 | **Telecom Lead in** |  |  | 2016-07-18 | 2016-07-20 |  |  |  |  |
| 822-SM-VB5-MP-1160B1 |  | Portion 1 - Laying of Duct |  | 2d | 2016-07-18 A | 2016-07-19 A | 822-SM-VB5-MP-1170F1 | 100% |  |  |
| 822-SM-VB5-MP-1160B2 |  | Portion 1 - Backfilling to Formation |  | 1d | 2016-07-20 A | 2016-07-20 A | 822-SM-VB5-MP-1160B1 | 100% |  |  |
|  | 4 | **Earthing and Lightning** |  |  | 2016-06-01 | 2016-11-16 |  |  |  |  |
| 822-SM-VB5-MP-1180L |  | Portion 2 - Earth Mat | level of effort | 1d | 2016-06-01 A | 2016-06-01 A | 822-SM-VB5-MP-1180L1 SS | 100% |  |  |
| 822-SM-VB5-MP-1180L1 |  | Portion 2 - Completion of Earth Mat Installation and testing |  | 1d | 2016-06-01 A | 2016-06-01 A |  | 100% |  |  |
| 822-SM-VB5-MP-1180L2 |  | Portion 2 - Allow Access for Delivery by DC |  | 4d | 2016-06-01 A | 2016-06-04 A | 822-SM-VB5-MP-1180L1 | 100% |  |  |
| 822-SM-VB5-MP-1180L3 |  | Portion 2 - Allow Access for Screeding |  | 7d | 2016-06-03 A | 2016-06-10 A | 822-SM-VB5-MP-1180L2 FS+5d | 100% |  |  |
| 822-SM-VB5-MP-1180L4 |  | Portion 2 - Backfill to Formation Level and SRT Test |  | 3d | 2016-06-11 A | 2016-06-14 A | 822-SM-VB5-MP-1180L3, 822-SM-VB5-MP-1180L FF | 100% |  |  |
| 822-SM-VB5-MP-1180L5 |  | Portion 2 - Laying Duct |  | 3d | 2016-07-18 A | 2016-07-20 A | 822-SM-VB5-MP-1180I2, 822-SM-VB5-MP-1130K2 SS | 100% |  |  |
| 822-SM-VB5-MP-1180L6 |  | Portion 2 - Earth and Lightning Pit |  | 3d | 2016-07-21 A | 2016-07-23 A | 822-SM-VB5-MP-1180L5 | 100% |  |  |
| 822-SM-VB5-MP-1180P |  | Portion 1 - Pedestrian Path | level of effort | 6d | 2016-07-21 A | 2016-07-27 A | 822-SM-VB5-MP-1180P1 SS | 100% |  |  |
| 822-SM-VB5-MP-1180P1 |  | Portion 1 - Laying of Duct |  | 3d | 2016-07-21 A | 2016-07-23 A | 822-SM-VB5-MP-1160B2 | 100% |  |  |
| 822-SM-VB5-MP-1180P2 |  | Portion 1 - Lightning Pits |  | 3d | 2016-07-25 A | 2016-07-27 A | 822-SM-VB5-MP-1180P1, 822-SM-VB5-MP-1180P FF | 100% |  |  |
| 822-SM-VB5-MP-1180Q |  | Portion 1 - Footpath in Front of Building | level of effort | 4d | 2016-11-12 A | 2016-11-16 A | 822-SM-VB5-MP-1180Q1 SS | 100% | 2016-10-19 | 2016-10-22 |
| 822-SM-VB5-MP-1180Q1 |  | Portion 1 - Laying of Duct |  | 2d | 2016-11-12 A | 2016-11-14 A | 822-SM-VB5-MP-1130B2 | 100% | 2016-10-19 | 2016-10-20 |
| 822-SM-VB5-MP-1180Q2 |  | Portion 1 - Lightning Pits |  | 2d | 2016-11-15 A | 2016-11-16 A | 822-SM-VB5-MP-1180Q1, 822-SM-VB5-MP-1180Q FF | 100% | 2016-10-21 | 2016-10-22 |

| ID | WBS | Activity | Type | Duration | Start | Finish | Predecessors | Complete | Planned start | Planned finish |
| --- | --- | --- | --- | --- | --- | --- | --- | --- | --- | --- |
|  | 5 | **CLP Cable** |  |  | 2016-06-03 | 2016-06-29 |  |  |  |  |
| 822-SM-VB5-MP-1180I1 |  | Portion 2 - Diversion of Existing Access Path |  | 1d | 2016-06-03 A | 2016-06-03 A | 822-SM-VB5-MP-1180L1 FS+9d | 100% |  |  |
| 822-SM-VB5-MP-1180I2 |  | Portion 2 - Laying of Cable to VB5 |  | 20d | 2016-06-04 A | 2016-06-27 A | 822-SM-VB5-MP-1180I1 | 100% |  |  |
| 822-SM-VB5-MP-1180I3 |  | Portion 2 - Laying of Precast Concrete Cover |  | 2d | 2016-06-28 A | 2016-06-29 A | 822-SM-VB5-MP-1180I2 | 100% |  |  |
|  | 6 | **Lighting** |  |  | 2016-07-25 | 2016-10-26 |  |  |  |  |
| 822-SM-VB5-MP-1180M1 |  | Portion 2 - Excavation for Lighting Ducts |  | 3d | 2016-07-25 A | 2016-10-15 A | 822-SM-VB5-MP-1180L4, 822-SM-VB5-MP-1180L6, 822-SM-VB5-MP-1180I3, EVT-VB5-100 FF | 100% | 2016-07-25 | 2016-07-27 |
| 822-SM-VB5-MP-1180M2 |  | Portion 2 - Laying of Duct |  | 3d | 2016-10-17 A | 2016-10-19 A | 822-SM-VB5-MP-1180M1 | 100% | 2016-10-01 | 2016-10-04 |
| 822-SM-VB5-MP-1180M3 |  | Portion 2 - Construction of Drawpits |  | 3d | 2016-10-20 A | 2016-10-22 A | 822-SM-VB5-MP-1180M2 | 100% | 2016-10-05 | 2016-10-07 |
| 822-SM-VB5-MP-1180M4 |  | Portion 2 - Construction of Lamp Pole Plinth |  | 3d | 2016-10-24 A | 2016-10-26 A | 822-SM-VB5-MP-1180M3 | 100% | 2016-10-08 | 2016-10-11 |
|  | 7 | **Irrigation Pipe** |  |  | 2015-10-25 | 2017-01-27 |  |  |  |  |
| 822-SM-VB5-MP-1200A3 |  | Portion 2 - Backfilling to Formation |  | 2d | 2015-10-25 A | 2017-01-27 A | 822-SM-VB5-MP-1200A2 | 100% | 2016-10-10 | 2016-10-11 |
| 822-SM-VB5-MP-1200A1 |  | Portion 2 - Excavation of Trench for Irrigation Pipe |  | 3d | 2016-07-25 A | 2016-12-14 A | 822-SM-VB5-MP-1180M1 SS, EVT-VB5-100 | 100% | 2016-07-25 | 2016-07-27 |
| 822-SM-VB5-MP-1200A2 |  | Portion 2 - Laying of Irrigiation Pipe and Testing (By 855) |  | 7d | 2016-10-17 A | 2017-01-21 A | 822-SM-VB5-MP-1200A1 | 100% | 2016-10-01 | 2016-10-08 |
|  | 3 | **Planting and Pavement Area** |  |  | 2016-06-15 | 2017-06-09 |  |  |  |  |
|  | 1 | **Surface Drainage** |  |  | 2016-07-02 | 2017-01-27 |  |  |  |  |
| 822-SM-VB5-MP-1130J |  | Portion 2 - 400 U-Channel at Toe of Buttress Wall | level of effort | 52d | 2016-07-02 A | 2017-01-20 A | 822-SM-VB5-MP-1130J1 SS | 100% | 2016-07-02 | 2016-08-31 |
| 822-SM-VB5-MP-1130J1 |  | Portion 2 - U-Channel (Except Exercise Area) |  | 10d | 2016-07-02 A | 2016-07-13 A | 822-SM-VB5-MP-1230C3 | 100% |  |  |
| 822-SM-VB5-MP-1130K |  | Portion 2 - 225 U-Channel adjacent to PW1 | level of effort | 13d | 2016-07-14 A | 2016-07-28 A | 822-SM-VB5-MP-1130K1 SS | 100% |  |  |
| 822-SM-VB5-MP-1130K1 |  | Portion 2 - Catchpit construction |  | 3d | 2016-07-14 A | 2016-07-16 A | 822-SM-VB5-MP-1130J1 | 100% |  |  |
| 822-SM-VB5-MP-1130B1 |  | Portion 1 - Construction of Catchpit CP9 and Pipe to SM1 |  | 3d | 2016-07-18 A | 2016-07-20 A | 822-SM-VB5-MP-1170F1 | 100% |  |  |
| 822-SM-VB5-MP-1130K2 |  | Portion 2 - U-Channel |  | 10d | 2016-07-18 A | 2016-07-28 A | 822-SM-VB5-MP-1130K1, 822-SM-VB5-MP-1130K FF | 100% |  |  |
| 822-SM-VB5-MP-1130L |  | Portion 2 - 225 U-Channel adjacent Planter Kerb and Footpath | level of effort | 14d | 2016-07-29 A | 2016-08-13 A | 822-SM-VB5-MP-1130L1 SS | 100% | 2016-08-17 | 2016-09-01 |
| 822-SM-VB5-MP-1130L1 |  | Portion 2 - Catchpit construction |  | 4d | 2016-07-29 A | 2016-08-02 A | 822-SM-VB5-MP-1130K2 | 100% | 2016-08-17 | 2016-08-20 |
| 822-SM-VB5-MP-1130L2 |  | Portion 2 - U-Channel |  | 10d | 2016-08-03 A | 2016-08-13 A | 822-SM-VB5-MP-1130L1, 822-SM-VB5-MP-1130L FF, 822-SM-VB5-MP-1200A3 FF | 100% | 2016-08-22 | 2016-09-01 |
| 822-SM-VB5-MP-1130M |  | Portion 2 - 225 U-Channel at Entrance | level of effort | 10d | 2016-08-15 A | 2016-08-25 A | 822-SM-VB5-MP-1130M1 SS | 100% | 2016-09-02 | 2016-09-13 |
| 822-SM-VB5-MP-1130M1 |  | Portion 2 - Catchpit construction |  | 4d | 2016-08-15 A | 2016-08-18 A | 822-SM-VB5-MP-1130L2 | 100% | 2016-09-02 | 2016-09-06 |
| 822-SM-VB5-MP-1130M2 |  | Portion 2 - U-Channel |  | 6d | 2016-08-19 A | 2016-08-25 A | 822-SM-VB5-MP-1130M1, 822-SM-VB5-MP-1130M FF | 100% | 2016-09-07 | 2016-09-13 |
| 822-SM-VB5-MP-1130B2 |  | Portion 1 - Construction of U-Channel |  | 6d | 2016-10-13 A | 2017-01-20 A | 822-SM-VB5-MP-1200G3, 822-SM-VB5-MP-1130B1, 822-SM-VB5-MP-1180M4, EVT-VB5-100 | 100% | 2016-10-12 | 2016-10-18 |
| 822-SM-VB5-MP-1130J2 |  | Portion 2 - Catchpit construction |  | 3d | 2016-12-28 A | 2017-01-27 A | 822-SM-VB5-MP-1170R1, EVT-VB5-100 | 100% | 2017-01-05 | 2017-01-07 |
| 822-SM-VB5-MP-1130J3 |  | Portion 2 - U-Channel (Exercise Area) |  | 6d | 2016-12-28 A | 2017-01-27 A | 822-SM-VB5-MP-1130J2, 822-SM-VB5-MP-1130J FF | 100% | 2017-01-09 | 2017-01-14 |

Notes:
- 822-SM-VB5-MP-1200A2: Notes: ? / DEC6 - DC855 have not completed their irrigation pipe installation. They are / waiting for WSD to inspect the pipe it is forecast that this will be done in the / third week of January 2017.

| ID | WBS | Activity | Type | Duration | Start | Finish | Predecessors | Complete | Planned start | Planned finish |
| --- | --- | --- | --- | --- | --- | --- | --- | --- | --- | --- |
|  | 2 | **Planter** |  |  | 2016-06-15 | 2017-02-20 |  |  |  |  |
| 822-SM-VB5-MP-1230C |  | Portion 2 - Planter PW1 | level of effort | 22d | 2016-06-15 A | 2016-07-09 A | 822-SM-VB5-MP-1230C1 SS | 100% |  |  |
| 822-SM-VB5-MP-1230C1 |  | Portion 2 - Preparation of Formation and Blinding Layer |  | 2d | 2016-06-15 A | 2016-06-16 A | 822-SM-VB5-MP-1180L4 | 100% |  |  |
| 822-SM-VB5-MP-1230C2 |  | Portion 2 - R.C. Planter Construction (First Stage) |  | 7d | 2016-06-17 A | 2016-06-24 A | 822-SM-VB5-MP-1230C1 | 100% |  |  |
| 822-SM-VB5-MP-1230C3 |  | Portion 2 - R.C. Planter Construction (Second Stage) |  | 6d | 2016-06-25 A | 2016-07-01 A | 822-SM-VB5-MP-1230C2 | 100% |  |  |
| 822-SM-VB5-MP-1230C4 |  | Portion 2 - Waterproofing and Sub-soil Drainage |  | 4d | 2016-07-02 A | 2016-07-06 A | 822-SM-VB5-MP-1230C3 | 100% |  |  |
| 822-SM-VB5-MP-1230C5 |  | Portion 2 - Backfill to Bottom of Soil Mix |  | 3d | 2016-07-07 A | 2016-07-09 A | 822-SM-VB5-MP-1230C4, 822-SM-VB5-MP-1230C FF | 100% |  |  |
| 822-SM-VB5-MP-1230H |  | Portion 2 - K1 Kerb Planter | level of effort | 6d | 2016-10-04 A | 2016-10-10 A | 822-SM-VB5-MP-1230H1 SS | 100% | 2016-10-12 | 2016-10-18 |
| 822-SM-VB5-MP-1230H1 |  | Portion 2 - Installation of K1 Kerb |  | 4d | 2016-10-04 A | 2016-10-07 A | 822-SM-VB5-MP-1130L2, 822-SM-VB5-MP-1170S1, EVT-VB5-100 | 100% | 2016-10-12 | 2016-10-15 |
| 822-SM-VB5-MP-1230H2 |  | Portion 2 - Backfill to Bottom of Soil Mix |  | 2d | 2016-10-08 A | 2016-10-10 A | 822-SM-VB5-MP-1230H1, 822-SM-VB5-MP-1170T1, 822-SM-VB5-MP-1230H FF | 100% | 2016-10-17 | 2016-10-18 |
| 822-SM-VB5-MP-1230E1 |  | Portion 1 - K1 Kerb Planter |  | 5d | 2016-11-17 A | 2016-11-22 A | 822-SM-VB5-MP-1160B2, 822-SM-VB5-MP-1180Q2, 822-SM-VB5-MP-1130B2 | 100% | 2016-10-24 | 2016-10-28 |
| 822-SM-VB5-MP-1230A |  | Portion 3 - Planter | level of effort | 14d | 2016-12-28 A | 2017-02-20 A | 822-SM-VB5-MP-1230A1 SS | 100% | 2016-12-31 | 2017-01-17 |
| 822-SM-VB5-MP-1230A1 |  | Portion 3 - Preparation of Formation |  | 2d | 2016-12-28 A | 2017-01-27 A | 822-SM-VB5-MP-1250L5, 822-SM-VB5-MP-1170Z3 | 100% | 2016-12-31 | 2017-01-03 |
| 822-SM-VB5-MP-1230A2 |  | Portion 3 - Planter Wall |  | 10d | 2017-01-28 A | 2017-02-20 A | 822-SM-VB5-MP-1230A1 | 100% | 2017-01-03 | 2017-01-13 |
| 822-SM-VB5-MP-1230A3 |  | Portion 3 - Backfill to Bottom of Soil Mix |  | 2d | 2017-01-28 A | 2017-02-20 A | 822-SM-VB5-MP-1230A2, 822-SM-VB5-MP-1230A FF | 100% | 2017-02-11 | 2017-02-13 |
|  | 3 | **Relocation of Labour Container to Planting Area** |  |  | 2016-07-11 | 2016-07-21 |  |  |  |  |
| 822-SM-VB5-MP-1170S1 |  | Portion 2 - Relocation of Container |  | 2d | 2016-07-11 A | 2016-07-12 A | 822-SM-VB5-MP-1230C5 | 100% |  |  |
| 822-SM-VB5-MP-1170S2 |  | Portion 2 - Site Clearance |  | 4d | 2016-07-13 A | 2016-07-16 A | 822-SM-VB5-MP-1170S1 | 100% |  |  |
| 822-SM-VB5-MP-1170S3 |  | Portion 2 - Preparation of Formation |  | 4d | 2016-07-18 A | 2016-07-21 A | 822-SM-VB5-MP-1170S2 | 100% |  |  |
|  | 4 | **Fence and Gate** |  |  | 2016-06-24 | 2017-04-18 |  |  |  |  |
| 822-SM-VB5-MP-1170F |  | Portion 1 - Fence Wall | level of effort | 70d | 2016-06-24 A | 2017-04-03 A | 822-SM-VB5-MP-1170F1 SS | 100% | 2016-06-24 | 2016-09-13 |
| 822-SM-VB5-MP-1170F1 |  | Portion 1 - Fence Wall footing |  | 20d | 2016-06-24 A | 2016-07-16 A | 822-SM-VB5-MP-1130H4 | 100% |  |  |
| 822-SM-VB5-MP-1170F2 |  | Portion 1 - Fabrication of Fence Wall |  | 30d | 2016-07-18 A | 2016-08-20 A | 822-SM-VB5-MP-1170F1 | 100% |  |  |
| 822-SM-VB5-MP-1170F3 |  | Portion 1 - Installation of Fence Wall |  | 6d | 2016-09-11 A | 2017-04-03 A | 822-SM-VB5-MP-1230E1, 822-SM-VB5-MP-1170F2, 822-SM-VB5-MP-1160E2, 822-SM-VB5-MP-1170F FF, EVT-VB5-100, 822-SM-VB5-MP-EI167 | 100% | 2016-10-11 | 2016-10-17 |
| 822-SM-VB5-MP-1170 |  | Portion 2 - Security Gate | level of effort | 28d | 2016-09-19 A | 2016-10-22 A | 822-SM-VB5-MP-1170A1 SS | 100% | 2016-09-13 | 2016-10-14 |
| 822-SM-VB5-MP-1170A1 |  | Portion 2 - Footings |  | 4d | 2016-09-19 A | 2016-09-26 A | 822-SM-VB5-MP-1130M2 | 100% | 2016-09-13 | 2016-09-16 |
| 822-SM-VB5-MP-1170A2 |  | Portion 2 - Installation of Gate Post |  | 2d | 2016-09-27 A | 2016-09-28 A | 822-SM-VB5-MP-1170A1 | 100% | 2016-09-17 | 2016-09-19 |
| 822-SM-VB5-MP-1170T |  | Portion 2 - Fence Wall FW1 (at Exercise Area) | level of effort | 31d | 2016-09-27 A | 2017-04-12 A | 822-SM-VB5-MP-1170T1 SS | 100% | 2016-09-17 | 2016-10-22 |
| 822-SM-VB5-MP-1170T1 |  | Portion 2 - Footings |  | 6d | 2016-09-27 A | 2016-10-03 A | 822-SM-VB5-MP-1170S3, 822-SM-VB5-MP-1170A1 | 100% | 2016-09-17 | 2016-09-23 |
| 822-SM-VB5-MP-1170T2 |  | Portion 2 - Installation of Fence Post |  | 2d | 2016-10-04 A | 2016-10-05 A | 822-SM-VB5-MP-1170T1 | 100% | 2016-10-15 | 2016-10-17 |
| 822-SM-VB5-MP-1170A3 |  | Portion 2 - Installation of Gate |  | 6d | 2016-10-18 A | 2016-11-24 A | 822-SM-VB5-MP-1170A2, 822-SM-VB5-MP-1170V3, 822-SM-VB5-MP-1170W3, 822-SM-VB5-MP-1170 FF | 100% | 2016-10-29 | 2016-11-04 |
| 822-SM-VB5-MP-EI167 |  | FSD Coloured Concrete Pavement requirements (EI/167 - 23Mar17) |  | 18d | 2017-03-06 A | 2017-03-23 A |  | 100% | 2017-04-01 | 2017-04-21 |
| 822-SM-VB5-MP-1170T3 |  | Portion 2 - Installation of Fence |  | 6d | 2017-03-21 A | 2017-04-12 A | 822-SM-VB5-MP-1170T2, 822-SM-VB5-MP-1170X3, 822-SM-VB5-MP-1170T FF, 822-SM-VB5-MP-EI167 | 100% | 2017-03-10 | 2017-03-16 |
| 822-SM-VB5-MP-1170U1 |  | Portion 2 - Fence wall FW2 - Installation of Fence |  | 6d | 2017-03-21 A | 2017-04-18 A | 822-SM-VB5-MP-1170R4, 822-SM-VB5-MP-1170T3, 822-SM-VB5-MP-EI167 | 100% | 2017-03-10 | 2017-03-16 |
| 822-SM-VB5-MP-1170U2 |  | Portion 2 - Access ladder for Slope |  | 6d | 2017-04-18 A | 2017-04-18 A | 822-SM-VB5-MP-1170U1 | 100% | 2017-04-19 | 2017-04-25 |

Notes:
- 822-SM-VB5-MP-1170U2: Notes: ? / Apil 2017 - It has been requested taht the current access ladder is / maintained at its loctation and therefore, an access ladder at its planned / location is no longer required.

| ID | WBS | Activity | Type | Duration | Start | Finish | Predecessors | Complete | Remaining | Planned start | Planned finish | Total float | Free float |
| --- | --- | --- | --- | --- | --- | --- | --- | --- | --- | --- | --- | --- | --- |
|  | 5 | **Hard Landscape Works** |  |  | 2016-10-06 | 2017-06-09 |  |  |  |  |  |  |  |
| 822-SM-VB5-MP-1230J |  | Portion 2 - Fitness Equipment | level of effort | 7d | 2016-10-06 A | 2017-06-09 | 822-SM-VB5-MP-1230J1 SS | 60% | 9d | 2017-01-25 | 2017-02-04 | 174d | 0d |
| 822-SM-VB5-MP-1230J1 |  | Portion 2 - Footings |  | 3d | 2016-10-06 A | 2016-10-08 A | 822-SM-VB5-MP-1170T2, 822-SM-VB5-MP-1160E5 | 100% |  | 2017-01-25 | 2017-01-27 |  |  |
| 822-SM-VB5-MP-1230F |  | Portion 1 - Installation of Bench |  | 2d | 2017-05-31 | 2017-06-01 | 822-SM-VB5-MP-1170F3, 822-SM-VB5-MP-1160E2 |  |  |  |  | 181d | 8d |
| 822-SM-VB5-MP-1230J2 |  | Portion 2 - Installation of Equipment |  | 4d | 2017-06-06 | 2017-06-09 | 822-SM-VB5-MP-1230J1, 822-SM-VB5-MP-1170X3, 822-SM-VB5-MP-1230J FF |  |  |  |  | 174d | 0d |
|  | 6 | **Pavement** |  |  | 2016-08-26 | 2017-06-05 |  |  |  |  |  |  |  |
| 822-SM-VB5-MP-1170V |  | Portion 2 - Foothpath in front of Building | level of effort | 10d | 2016-08-26 A | 2016-09-06 A | 822-SM-VB5-MP-1170V1 SS | 100% |  | 2016-09-14 | 2016-09-24 |  |  |
| 822-SM-VB5-MP-1170V1 |  | Portion 2 - Preparation of Formation |  | 2d | 2016-08-26 A | 2016-08-27 A | 822-SM-VB5-MP-1130M2 | 100% |  | 2016-09-14 | 2016-09-15 |  |  |
| 822-SM-VB5-MP-1170V2 |  | Portion 2 - Lay Sub Base |  | 2d | 2016-08-29 A | 2016-08-30 A | 822-SM-VB5-MP-1170V1 | 100% |  | 2016-09-16 | 2016-09-17 |  |  |
| 822-SM-VB5-MP-1170V3 |  | Portion 2 - Lay Concrete Paving Block |  | 6d | 2016-08-31 A | 2016-09-06 A | 822-SM-VB5-MP-1170V2, 822-SM-VB5-MP-1170V FF, EVT-VB5-100 FF | 100% |  | 2016-09-19 | 2016-09-24 |  |  |
| 822-SM-VB5-MP-1170W |  | Portion 2 - Parking Area | level of effort | 12d | 2016-10-04 A | 2016-10-17 A | 822-SM-VB5-MP-1170W1 SS | 100% |  | 2016-10-15 | 2016-10-28 |  |  |
| 822-SM-VB5-MP-1170W1 |  | Portion 2 - Preparation of Formation |  | 2d | 2016-10-04 A | 2016-10-05 A | 822-SM-VB5-MP-1130M2, 822-SM-VB5-MP-1170T1, EVT-VB5-100 | 100% |  | 2016-10-15 | 2016-10-17 |  |  |
| 822-SM-VB5-MP-1170W2 |  | Portion 2 - Lay Sub Base |  | 2d | 2016-10-06 A | 2016-10-07 A | 822-SM-VB5-MP-1170W1 | 100% |  | 2016-10-18 | 2016-10-19 |  |  |
| 822-SM-VB5-MP-1170W3 |  | Portion 2 - Lay Concrete Paving Block |  | 8d | 2016-10-08 A | 2016-10-17 A | 822-SM-VB5-MP-1170W2, 822-SM-VB5-MP-1170W FF | 100% |  | 2016-10-20 | 2016-10-28 |  |  |
| 822-SM-VB5-MP-1160E1 |  | Portion 1 - Laying Subbase |  | 3d | 2016-11-23 A | 2016-11-25 A | 822-SM-VB5-MP-1230E1 | 100% |  | 2016-10-29 | 2016-11-01 |  |  |
| 822-SM-VB5-MP-1160E2 |  | Portion 1 - Paving Block |  | 6d | 2016-11-26 A | 2017-04-01 A | 822-SM-VB5-MP-1160E1, EVT-VB5-100 | 100% |  | 2016-11-02 | 2016-11-08 |  |  |
| 822-SM-VB5-MP-1170X |  | Portion 2 - Exercise Area | level of effort | 9d | 2017-02-20 A | 2017-06-05 | 822-SM-VB5-MP-1170X1 SS |  | 5d | 2017-02-01 | 2017-02-10 | 174d | 0d |
| 822-SM-VB5-MP-1170X1 |  | Portion 2 - Preparation of Formation |  | 2d | 2017-02-20 A | 2017-03-17 A | 822-SM-VB5-MP-1130J3, 822-SM-VB5-MP-1170T2 | 100% |  | 2017-02-01 | 2017-02-02 |  |  |
| 822-SM-VB5-MP-1230L |  | Portion 3 - Pavement | level of effort | 0d | 2017-02-23 A | 2017-03-11 A | 822-SM-VB5-MP-1230L1 SS | 100% |  | 2017-02-23 | 2017-02-23 |  |  |
| 822-SM-VB5-MP-1230L1 |  | Portion 3 - Preparation of Formation |  | 2d | 2017-02-23 A | 2017-02-25 A | 822-SM-VB5-MP-1230A2, 822-SM-VB5-MP-1170Y3, EVT-VB5-100 | 100% |  | 2017-02-11 | 2017-02-13 |  |  |
| 822-SM-VB5-MP-1230L2 |  | Portion 3 - Subbase |  | 2d | 2017-02-27 A | 2017-03-14 A | 822-SM-VB5-MP-1230L1 | 100% |  | 2017-02-14 | 2017-02-15 |  |  |
| 822-SM-VB5-MP-1230L3 |  | Portion 3 - Lay Concrete Paving Block |  | 2d | 2017-03-15 A | 2017-03-16 A | 822-SM-VB5-MP-1230L2, 822-SM-VB5-MP-1230L FF | 100% |  | 2017-03-01 | 2017-03-02 |  |  |
| 822-SM-VB5-MP-1170X2 |  | Portion 2 - Lay Sub Base |  | 2d | 2017-03-18 A | 2017-03-20 A | 822-SM-VB5-MP-1170X1 | 100% |  | 2017-03-02 | 2017-03-03 |  |  |
| 822-SM-VB5-MP-1230L4 |  | Portion 3 - U Channel Covers near bus stop |  | 2d | 2017-04-18 A | 2017-04-20 A | 822-SM-VB5-MP-1170U1 | 100% |  | 2017-04-19 | 2017-04-20 |  |  |
| 822-SM-VB5-MP-1170X3 |  | Portion 2 - Lay Safety Mat |  | 5d | 2017-05-31 | 2017-06-05 | 822-SM-VB5-MP-1170X2, 822-SM-VB5-MP-1170X FF |  |  |  |  | 174d | 0d |

Notes:
- 822-SM-VB5-MP-1230J2: Notes: ? / April 2017 - Dealyed due to FSD requirements to modify the carpark area / under EI167 and the slope works.

| ID | WBS | Activity | Type | Duration | Start | Finish | Predecessors | Complete | Planned start | Planned finish | Calendar |
| --- | --- | --- | --- | --- | --- | --- | --- | --- | --- | --- | --- |
|  | 4 | **Roadworks** |  |  | 2016-07-18 | 2017-06-01 |  |  |  |  |  |
|  | 1 | **U/U Undertaker Works** |  |  | 2016-07-18 | 2016-12-28 |  |  |  |  |  |
| 822-SM-VB5-MP-1170G |  | Portion 1 - CLP cable (by CLP) | level of effort | 13d | 2016-07-18 A | 2016-08-10 A | 822-SM-VB5-MP-1170G1 SS | 100% | 2016-07-18 | 2016-08-01 |  |
| 822-SM-VB5-MP-1170G1 |  | Portion 1 - Advance Notification |  | 6d | 2016-07-18 A | 2016-07-23 A | 822-SM-VB5-MP-1170F1 | 100% |  |  |  |
| 822-SM-VB5-MP-1170H |  | Portion 1 - Telecom (by HGC) | level of effort | 6d | 2016-07-18 A | 2016-07-23 A | 822-SM-VB5-MP-1170H1 SS | 100% |  |  |  |
| 822-SM-VB5-MP-1170H1 |  | Portion 1 - Laying of Cable Duct (At Pedestrian Path) |  | 4d | 2016-07-18 A | 2016-07-21 A | 822-SM-VB5-MP-1170F1 | 100% |  |  |  |
| 822-SM-VB5-MP-1170H2 |  | Portion 1 - Construction of Drawpits (At pedestrian Path) |  | 2d | 2016-07-22 A | 2016-07-23 A | 822-SM-VB5-MP-1170H1, 822-SM-VB5-MP-1170H FF | 100% |  |  |  |
| 822-SM-VB5-MP-1170G2 |  | Portion 1 - Laying of Cable |  | 6d | 2016-07-25 A | 2016-08-09 A | 822-SM-VB5-MP-1170G1 | 100% | 2016-07-25 | 2016-07-30 |  |
| 822-SM-VB5-MP-1170N |  | Portion 2 - CLP cable | level of effort | 18d | 2016-07-25 A | 2016-12-28 A | 822-SM-VB5-MP-1170N1 SS | 100% | 2016-07-25 | 2016-08-13 |  |
| 822-SM-VB5-MP-1170N1 |  | Portion 2 - Access for CLP cable Laying |  | 8d | 2016-07-25 A | 2016-08-10 A | 822-SM-VB5-MP-1170G1 | 100% | 2016-07-25 | 2016-08-02 |  |
| 822-SM-VB5-MP-1170Z |  | Portion 3 - CLP Cable | level of effort | 12d | 2016-07-26 A | 2016-12-28 A | 822-SM-VB5-MP-1170Z1 SS | 100% | 2016-07-26 | 2016-08-08 |  |
| 822-SM-VB5-MP-1170Z1 |  | Portion 3 - Excavation for Cable laying and Connection |  | 2d | 2016-07-26 A | 2016-10-13 A | 822-SM-VB5-MP-1250H4 | 100% | 2016-07-26 | 2016-07-27 |  |
| 822-SM-VB5-MP-1170G3 |  | Portion 1 - Backfilling |  | 1d | 2016-08-10 A | 2016-08-10 A | 822-SM-VB5-MP-1170G2, 822-SM-VB5-MP-1170G FF | 100% | 2016-09-06 | 2016-09-06 |  |
| 822-SM-VB5-MP-1170N2 |  | Portion 2 - Laying of Cross Road Duct |  | 4d | 2016-08-12 A | 2016-08-16 A | 822-SM-VB5-MP-1170N1 | 100% | 2016-08-22 | 2016-08-25 |  |
| EVT-VB5-100 |  | CLP Delay in locating and completing 11KV Cabling Works |  | 69d | 2016-10-13 A | 2016-12-28 A | 822-SM-VB5-MP-1170Z2 SS | 100% | 2016-10-13 | 2016-12-20 | M |
| 822-SM-VB5-MP-1170Z2 |  | Portion 3 - Laying of Cable and Connection of 11kVA Cable |  | 8d | 2016-10-14 A | 2016-12-28 A | 822-SM-VB5-MP-1170Z1 | 100% | 2016-10-01 | 2016-10-10 |  |
| 822-SM-VB5-MP-1170N3 |  | Portion 2 - Connection of 11kVA Cable Joint |  | 6d | 2016-10-31 A | 2016-12-28 A | 822-SM-VB5-MP-1170N1, 822-SM-VB5-MP-1170N2, 822-SM-VB5-MP-1170S3, 822-SM-VB5-MP-1170Z2, 822-SM-VB5-MP-1170N FF | 100% | 2016-10-11 | 2016-10-17 |  |
| 822-SM-VB5-MP-1170Z3 |  | Portion 3 - Backfilling |  | 2d | 2016-12-27 A | 2016-12-28 A | 822-SM-VB5-MP-1170Z2, 822-SM-VB5-MP-1170Z FF | 100% | 2016-10-11 | 2016-10-12 |  |
|  | 2 | **Connection to Surface Drainage** |  |  | 2016-10-03 | 2016-10-08 |  |  |  |  |  |
| 822-SM-VB5-MP-1170Y1 |  | Portion 3 - Excavation |  | 2d | 2016-10-03 A | 2016-10-04 A | 822-SM-VB5-MP-1250L5, EVT-VB5-100 | 100% | 2016-10-01 | 2016-10-03 |  |
| 822-SM-VB5-MP-1170Y2 |  | Portion 3 - Pipe Laying |  | 2d | 2016-10-05 A | 2016-10-06 A | 822-SM-VB5-MP-1170Y1 | 100% | 2016-10-04 | 2016-10-05 |  |
| 822-SM-VB5-MP-1170Y3 |  | Portion 3 - Backfilling |  | 2d | 2016-10-07 A | 2016-10-08 A | 822-SM-VB5-MP-1170Y2 | 100% | 2016-10-06 | 2016-10-07 |  |
|  | 3 | **Public Lighting** |  |  | 2016-11-01 | 2017-03-20 |  |  |  |  |  |
| 822-SM-VB5-MP-1170J1 |  | Portion 1 - Laying of duct |  | 3d | 2016-11-01 A | 2016-11-03 A | 822-SM-VB5-MP-1160B2, 822-SM-VB5-MP-1180P2, 822-SM-VB5-MP-1170H2, EVT-VB5-100 | 100% | 2016-09-30 | 2016-10-03 |  |
| 822-SM-VB5-MP-1170J2 |  | Portion 1 - Backfill to Formation Level |  | 2d | 2016-11-04 A | 2016-11-05 A | 822-SM-VB5-MP-1170J1, 822-SM-VB5-MP-1170G3 | 100% | 2016-10-04 | 2016-10-05 |  |
| 822-SM-VB5-MP-1170J3 |  | Portion 1 - Excavation of Pit for Installation of Lamp Pole |  | 2d | 2016-11-07 A | 2016-11-08 A | 822-SM-VB5-MP-1170J2, 822-SM-VB5-MP-1160E3 | 100% | 2017-01-06 | 2017-01-07 |  |
| 822-SM-VB5-MP-1170J4 |  | Portion 1 - Installation of Lamp Pole by HyD Lighting |  | 1d | 2016-11-25 A | 2016-11-25 A | 822-SM-VB5-MP-1170J3 FS+14d | 100% | 2017-01-25 | 2017-01-25 |  |
| 822-SM-VB5-MP-1170P1 |  | Portion 2 - Laying of Duct |  | 4d | 2016-12-29 A | 2017-01-27 A | 822-SM-VB5-MP-1170N3, EVT-VB5-100 | 100% | 2016-10-18 | 2016-10-21 |  |
| 822-SM-VB5-MP-1260A |  | Portion 3 - Laying Cable duct and Drawpit |  | 3d | 2016-12-31 A | 2017-01-27 A | 822-SM-VB5-MP-1170Z3, EVT-VB5-100 | 100% | 2016-10-13 | 2016-10-15 |  |
| 822-SM-VB5-MP-1260C |  | Portion 3 - Installation of Lamp Pole by HyD Lighting |  | 1d | 2017-03-10 A | 2017-03-11 A | 822-SM-VB5-MP-1260B FS+14d | 100% | 2017-03-17 | 2017-03-17 |  |
| 822-SM-VB5-MP-1170P2 |  | Portion 2 - Construction of Drawpit |  | 2d | 2017-03-17 A | 2017-03-20 A | 822-SM-VB5-MP-1170P1 | 100% | 2017-02-28 | 2017-03-01 |  |
| 822-SM-VB5-MP-1260B |  | Portion 3 - Excavation for Light Pole |  | 1d | 2017-03-17 A | 2017-03-20 A | 822-SM-VB5-MP-1260A | 100% | 2017-02-28 | 2017-02-28 |  |

Notes:
- EVT-VB5-100: Notes: ? NOV6 - letter ref. / 822-COR-LCA-CCM-002732 dated 12Dec16. CLP delaying Works at SMVB

| ID | WBS | Activity | Type | Duration | Start | Finish | Predecessors | Complete | Planned start | Planned finish | Total float | Free float |
| --- | --- | --- | --- | --- | --- | --- | --- | --- | --- | --- | --- | --- |
|  | 4 | **Traffic Signal** |  |  | 2016-11-07 | 2017-06-01 |  |  |  |  |  |  |
| 822-SM-VB5-MP-1170K1 |  | Portion 1 - Laying of duct and Constructino of Drawing pit |  | 3d | 2016-11-07 A | 2016-11-09 A | 822-SM-VB5-MP-1170J2, EVT-VB5-100 | 100% | 2016-10-06 | 2016-10-08 |  |  |
| 822-SM-VB5-MP-1170K2 |  | Portion 1 - Backfill to Formation Level |  | 2d | 2016-11-10 A | 2016-11-11 A | 822-SM-VB5-MP-1170K1 | 100% | 2016-10-10 | 2016-10-11 |  |  |
| 822-SM-VB5-MP-1170K3 |  | Portion 1 - Excavation and Installation of Pole |  | 2d | 2017-05-31 | 2017-06-01 | 822-SM-VB5-MP-1170K2, 822-SM-VB5-MP-1160E3 |  |  |  | 181d | 8d |
| 822-SM-VB5-MP-1170Q1 |  | Portion 2 - Installation of Traffic Sign |  | 2d | 2017-05-31 | 2017-06-01 | 822-SM-VB5-MP-1160H4 |  |  |  | 181d | 7d |
| 822-SM-VB5-MP-1280A |  | Portion 3 - Installation of Traffic Sign |  | 1d | 2017-05-31 | 2017-05-31 | 822-SM-VB5-MP-1270D |  |  |  | 182d | 5d |
|  | 5 | **Road Drainage Gully** |  |  | 2017-02-18 | 2017-03-13 |  |  |  |  |  |  |
| 822-SM-VB5-MP-1200E1 |  | Portion 1 - Excavation |  | 5d | 2017-02-18 A | 2017-02-23 A | 822-SM-TTM-MP-1320C | 100% |  |  |  |  |
| 822-SM-VB5-MP-1200E2 |  | Portion 1 - Installation of Precast Gully and associated pipe |  | 3d | 2017-03-02 A | 2017-03-10 A | 822-SM-VB5-MP-1200E1 | 100% | 2017-03-02 | 2017-03-04 |  |  |
| 822-SM-VB5-MP-1200E3 |  | Portion 1 - Backfilling |  | 2d | 2017-03-11 A | 2017-03-13 A | 822-SM-VB5-MP-1200E2 | 100% | 2017-03-06 | 2017-03-07 |  |  |
|  | 6 | **Pavement** |  |  | 2017-03-08 | 2017-03-24 |  |  |  |  |  |  |
| 822-SM-VB5-MP-1270A |  | Portion 3 - Preparation of Formation |  | 2d | 2017-03-08 A | 2017-03-09 A | 822-SM-VB5-MP-1230A2 | 100% | 2017-02-28 | 2017-03-01 |  |  |
| 822-SM-VB5-MP-1160E3 |  | Portion 1 - Installation of K1 Kerb |  | 6d | 2017-03-10 A | 2017-03-16 A | 822-SM-VB5-MP-1200H4, 822-SM-VB5-MP-1200E3 | 100% | 2017-03-08 | 2017-03-14 |  |  |
| 822-SM-VB5-MP-1160H1 |  | Portion 2 - Preparation of Formation |  | 2d | 2017-03-10 A | 2017-03-11 A | 822-SM-VB5-MP-1170N3, 822-SM-VB5-MP-1170P2, 822-SM-VB5-MP-1130J3, EVT-VB5-100 | 100% | 2017-03-02 | 2017-03-03 |  |  |
| 822-SM-VB5-MP-1270B |  | Portion 3 - K1 Kerb and Drop Kerb |  | 4d | 2017-03-10 A | 2017-03-14 A | 822-SM-VB5-MP-1270A | 100% | 2017-03-02 | 2017-03-06 |  |  |
| 822-SM-VB5-MP-1160H2 |  | Portion 2 - K1 Kerb and Drop Kerb |  | 5d | 2017-03-13 A | 2017-03-17 A | 822-SM-VB5-MP-1160H1 | 100% | 2017-03-04 | 2017-03-09 |  |  |
| 822-SM-VB5-MP-1270C |  | Portion 3 - Lay Sub base |  | 2d | 2017-03-15 A | 2017-03-16 A | 822-SM-VB5-MP-1270B, 822-SM-VB5-MP-1290A | 100% | 2017-03-07 | 2017-03-08 |  |  |
| 822-SM-VB5-MP-1160E4 |  | Portion 1 - Laying Subbase |  | 3d | 2017-03-17 A | 2017-03-20 A | 822-SM-VB5-MP-1160E3, 822-SM-VB5-MP-1170L1 | 100% | 2017-03-22 | 2017-03-24 |  |  |
| 822-SM-VB5-MP-1270D |  | Portion 3 - Lay concrete Paving Block |  | 4d | 2017-03-17 A | 2017-03-20 A | 822-SM-VB5-MP-1260C, 822-SM-VB5-MP-1270C | 100% | 2017-03-18 | 2017-03-22 |  |  |
| 822-SM-VB5-MP-1160H3 |  | Portion 2 - Lay Sub base |  | 2d | 2017-03-18 A | 2017-03-20 A | 822-SM-VB5-MP-1160H2 | 100% | 2017-03-10 | 2017-03-11 |  |  |
| 822-SM-VB5-MP-1160E5 |  | Portion 1 - Lay Precast Concrete Block |  | 7d | 2017-03-21 A | 2017-03-24 A | 822-SM-VB5-MP-1160E4 | 100% | 2017-03-25 | 2017-04-01 |  |  |
| 822-SM-VB5-MP-1160H4 |  | Portion 2 - Lay concrete Paving Block |  | 5d | 2017-03-21 A | 2017-03-24 A | 822-SM-VB5-MP-1160H3 | 100% | 2017-03-13 | 2017-03-17 |  |  |
|  | 7 | **Street Furniture** |  |  | 2017-03-17 | 2017-03-20 |  |  |  |  |  |  |
| 822-SM-VB5-MP-1170L |  | Portion 1 - Type 2 Railing | level of effort | 22d | 2017-03-17 A | 2017-03-20 A | 822-SM-VB5-MP-1170L1 SS | 100% | 2017-03-15 | 2017-04-08 |  |  |
| 822-SM-VB5-MP-1170L1 |  | Portion 1 - Installation of Post |  | 6d | 2017-03-17 A | 2017-03-20 A | 822-SM-VB5-MP-1160E3 | 100% | 2017-03-15 | 2017-03-21 |  |  |
| 822-SM-VB5-MP-1170L2 |  | Portion 1 - Installation railing |  | 6d | 2017-03-17 A | 2017-03-20 A | 822-SM-VB5-MP-1160E5, 822-SM-VB5-MP-1170L FF | 100% | 2017-04-03 | 2017-04-08 |  |  |
| 822-SM-VB5-MP-1170M1 |  | Portion 1 - Traffic Sign - Installation of Post and Sign |  | 2d | 2017-03-17 A | 2017-03-20 A | 822-SM-VB5-MP-1160E5 | 100% | 2017-04-03 | 2017-04-04 |  |  |

| ID | WBS | Activity | Type | Duration | Start | Finish | Predecessors | Complete | Planned start | Planned finish | Total float | Free float |
| --- | --- | --- | --- | --- | --- | --- | --- | --- | --- | --- | --- | --- |
|  | 8 | **Beam Barrier** |  |  | 2017-03-13 | 2017-03-14 |  |  |  |  |  |  |
| 822-SM-VB5-MP-1290A |  | Portion 3 - Erect Beam Barrier Post |  | 3d | 2017-03-13 A | 2017-03-14 A | 822-SM-VB5-MP-1270A | 100% | 2017-03-02 | 2017-03-04 |  |  |
| 822-SM-VB5-MP-1290B |  | Portion 3 - Install Beam Barrier |  | 2d | 2017-03-13 A | 2017-03-14 A | 822-SM-VB5-MP-1270D | 100% | 2017-03-23 | 2017-03-24 |  |  |
|  | 5 | **Buttress Wall** |  |  | 2016-10-12 | 2017-01-19 |  |  |  |  |  |  |
| 822-SM-VB5-MP-1170R1 |  | Portion 2 - Removal of 11kVA Cable |  | 6d | 2016-10-12 A | 2016-12-29 A | 822-SM-VB5-MP-1170N3, EVT-VB5-100 | 100% | 2016-10-18 | 2016-10-24 |  |  |
| 822-SM-VB5-MP-1170R2 |  | Portion 2 - Removal of Temporary Shelter |  | 2d | 2017-01-02 A | 2017-01-03 A | 822-SM-VB5-MP-1170R1 | 100% | 2017-01-05 | 2017-01-06 |  |  |
| 822-SM-VB5-MP-1170R3 |  | Portion 2 - Breaking of Temporary U-Channel |  | 6d | 2017-01-02 A | 2017-01-10 A | 822-SM-VB5-MP-1170R1, 822-SM-VB5-MP-1170R2 FF | 100% | 2017-01-05 | 2017-01-11 |  |  |
| 822-SM-VB5-MP-1170R4 |  | Portion 2 - Construction of 500 U-Channel |  | 10d | 2017-01-09 A | 2017-01-19 A | 822-SM-VB5-MP-1170R1, 822-SM-VB5-MP-1170R3 FF | 100% | 2017-01-05 | 2017-01-16 |  |  |
|  | 6 | **Retaining Wall "A"** |  |  | 2016-08-30 | 2016-10-01 |  |  |  |  |  |  |
| 822-SM-VB5-MP-1250L1 |  | Portion 3 - Preparation of Formation |  | 2d | 2016-08-30 A | 2016-08-31 A | 822-SM-VB5-MP-1250K3 | 100% | 2016-09-03 | 2016-09-05 |  |  |
| 822-SM-VB5-MP-1250L2 |  | Portion 3 - RC Structure |  | 6d | 2016-09-01 A | 2016-09-20 A | 822-SM-VB5-MP-1250L1 | 100% | 2016-09-01 | 2016-09-07 |  |  |
| 822-SM-VB5-MP-1250L3 |  | Portion 3 - Backfilling |  | 5d | 2016-09-21 A | 2016-09-26 A | 822-SM-VB5-MP-1250L2 | 100% | 2016-09-08 | 2016-09-13 |  |  |
| 822-SM-VB5-MP-1250L4 |  | Portion 3 - U-Channel and Catch pit at Toe of Wall |  | 5d | 2016-09-21 A | 2016-09-26 A | 822-SM-VB5-MP-1250L2 | 100% | 2016-09-08 | 2016-09-13 |  |  |
| 822-SM-VB5-MP-1250L5 |  | Portion 3 - U-Channel and Catch pit at Crest of Wall |  | 5d | 2016-09-27 A | 2016-10-01 A | 822-SM-VB5-MP-1250L3, 822-SM-VB5-MP-1250L4, EVT-VB5-100 FF | 100% | 2016-09-14 | 2016-09-19 |  |  |
|  | 7 | **Soft Landscape** |  |  | 2016-10-18 | 2017-06-10 |  |  |  |  |  |  |
| 822-SM-VB5-MP-1230K1 |  | Portion 2 - Placing Soil Mix |  | 4d | 2016-10-18 A | 2016-10-21 A | 822-SM-VB5-MP-1230C5, 822-SM-VB5-MP-1230H2, 822-SM-VB5-MP-1170W3 | 100% | 2016-10-29 | 2016-11-02 |  |  |
| 822-SM-VB5-MP-1230K2 |  | Portion 2 - Tree and Shrubs Planting |  | 4d | 2016-10-22 A | 2016-10-26 A | 822-SM-VB5-MP-1230K1 | 100% | 2016-11-03 | 2016-11-07 |  |  |
| 822-SM-VB5-MP-1230G1 |  | Portion 1 - Placing Soil Mix |  | 6d | 2017-05-31 | 2017-06-06 | 822-SM-VB5-MP-1230E1, 822-SM-VB5-MP-1160E2 |  |  |  | 173d | 0d |
| 822-SM-VB5-MP-1230M1 |  | Portion 3 - Placing Soil Mix |  | 3d | 2017-05-31 | 2017-06-02 | 822-SM-VB5-MP-1230A3, 822-SM-VB5-MP-1230L3, 822-SM-VB5-MP-1270D |  |  |  | 177d | 0d |
| 822-SM-VB5-MP-1230M2 |  | Portion 3 - Tree and Shrubs Planting |  | 3d | 2017-06-03 | 2017-06-06 | 822-SM-VB5-MP-1230M1 |  |  |  | 177d | 0d |
| 822-SM-VB5-MP-1230G2 |  | Portion 1 - Tree and Shrubs Planting |  | 4d | 2017-06-07 | 2017-06-10 | 822-SM-VB5-MP-1230G1 |  |  |  | 173d | 0d |
|  | 8 | **Completion** |  |  | 2017-06-06 | 2017-06-10 |  |  |  |  |  |  |
| 822-SM-VB5-MP-1330 |  | Completion of Portion 3 | milestone | 0d | 2017-06-06 | 2017-06-06 | 822-SM-VB5-MP-1280A, 822-SM-VB5-MP-1290B, 822-SM-VB5-MP-1230M2, 822-SM-VB5-MP-1230L4 |  |  |  | 177d |  |
| 822-SM-VB5-MP-1320 |  | Completion of Portion 2 | milestone | 0d | 2017-06-09 | 2017-06-09 | 822-SM-VB5-MP-1230H2, 822-SM-VB5-MP-1170A3, 822-SM-VB5-MP-1170T3, 822-SM-VB5-MP-1170U1, 822-SM-VB5-MP-1230J2, 822-SM-VB5-MP-1230K2, 822-SM-VB5-MP-1170Q1, 822-SM-VB5-MP-1170U2 |  |  |  | 174d |  |
| 822-SM-VB5-MP-1310 |  | Completion of Portion 1 | milestone | 0d | 2017-06-10 | 2017-06-10 | 822-SM-VB5-MP-1230F, 822-SM-VB5-MP-1170J4, 822-SM-VB5-MP-1170K3, 822-SM-VB5-MP-1170L2, 822-SM-VB5-MP-1170M1, 822-SM-VB5-MP-1230G2 |  |  |  | 173d |  |

| ID | WBS | Activity | Duration | Start | Finish | Predecessors | Complete | Remaining | Planned start | Planned finish | Total float | Free float | Calendar |
| --- | --- | --- | --- | --- | --- | --- | --- | --- | --- | --- | --- | --- | --- |
|  | 6 | **TTA Approval and Excavation Permit** |  | 2016-02-01 | 2017-09-29 |  |  |  |  |  |  |  |  |
| 822-SM-TTM-EW-0110 |  | TTMS Trial run on 19 Jan 2016 | 1d | 2016-02-01 A | 2016-02-01 A |  | 100% |  |  |  |  |  | W11 6 day site - no stoppage at CNY |
| 822-SM-TTM-EW-0120 |  | SLG endosed the revised drawing | 1d | 2016-02-01 A | 2016-02-01 A | 822-SM-TTM-EW-0110 FS+8d | 100% |  |  |  |  |  |  |
| 822-SM-TTM-EW-0130 |  | EMSD and LCAL prepare signal control system (8 weeks) | 62d | 2016-04-01 A | 2016-06-11 A | 822-SM-TTM-EW-0120 FS+1d | 100% |  |  |  |  |  | W11 6 day site - no stoppage at CNY |
| 822-SM-TTM-EW-0160 |  | XP application and approval (45 days) | 45d | 2016-06-01 A | 2016-07-15 A | 822-SM-TTM-EW-0130 SS+5.01d | 100% |  |  |  |  |  | 05 LAL 7 D/W (No Holiday) |
| 822-SM-TTM-EW-0140 |  | Application of Gazetti Notice (14 days) | 14d | 2016-06-05 A | 2016-06-20 A | 822-SM-TTM-EW-0130, 822-SM-TTM-EW-0160 | 100% |  | 2016-07-15 | 2016-08-01 |  |  |  |
| 822-SM-TTM-EW-0150 |  | TTA Implementation - Stage 4 (assume start on 30 Apr 2016) (-Superseded-) | 1d | 2016-06-20 A | 2017-05-31 | 822-SM-TTM-EW-0140 | 100% | 0d | 2016-08-01 | 2016-08-02 | 78d | 0d |  |
|  | 1 | **Zone 4 - East elevation** |  | 2017-05-31 | 2017-09-29 |  |  |  |  |  |  |  |  |
| 822-SM-TTM-EW-1210 |  | Trial pit and Utilities Detection (-Superseded-) | 6d | 2017-05-31 | 2017-06-06 | 822-SM-TTM-EW-0150 |  |  |  |  | 78d | 0d |  |
| 822-SM-TTM-EW-1220 |  | Excavation / Shoring for manhole and pipeline (-Superseded-) | 33d | 2017-06-03 | 2017-07-11 | 822-SM-TTM-EW-1210 SS+3d |  |  |  |  | 78d | 0d |  |
| 822-SM-TTM-EW-1230 |  | Install drainage pipe and manhole construction (-Superseded-) | 36d | 2017-06-28 | 2017-08-08 | 822-SM-TTM-EW-1220 FF+24d |  |  |  |  | 78d | 0d |  |
| 822-SM-TTM-EW-1240 |  | Connection of gully pipes (-Superseded-) | 24d | 2017-07-26 | 2017-08-22 | 822-SM-TTM-EW-1230 FF+12d |  |  |  |  | 78d | 0d |  |
| 822-SM-TTM-EW-1250 |  | Install sewer pipe and manhole (-Superseded-) | 30d | 2017-08-09 | 2017-09-12 | 822-SM-TTM-EW-1230 |  |  |  |  | 84d | 6d |  |
| 822-SM-TTM-EW-1260 |  | Backfill and lay sub-base (-Superseded-) | 24d | 2017-08-23 | 2017-09-19 | 822-SM-TTM-EW-1240 |  |  |  |  | 78d | 0d |  |
| 822-SM-TTM-EW-1270 |  | Ashpalt laying and road marking (-Superseded-) | 9d | 2017-09-20 | 2017-09-29 | 822-SM-TTM-EW-1250, 822-SM-TTM-EW-1260 |  |  |  |  | 78d |  |  |
|  | 2 | **Zone 5 - South Elevation** |  |  |  |  |  |  |  |  |  |  |  |
|  | 3 | **Zone 7 - Triangular area** |  | 2017-05-31 | 2017-09-13 |  |  |  |  |  |  |  |  |
| 822-SM-TTM-EW-1310 |  | Trial pit and Utilities Detection (-Superseded-) | 6d | 2017-05-31 | 2017-06-06 |  |  |  |  |  | 92d | 0d |  |
| 822-SM-TTM-EW-1320 |  | Excavation / Shoring for manhole and pipeline (-Superseded-) | 30d | 2017-06-03 | 2017-07-07 | 822-SM-TTM-EW-1310 SS+3d |  |  |  |  | 92d | 0d |  |
| 822-SM-TTM-EW-1330 |  | Install drainage pipe and manhole construction (-Superseded-) | 18d | 2017-06-24 | 2017-07-14 | 822-SM-TTM-EW-1320 FF+6d |  |  |  |  | 92d | 0d |  |
| 822-SM-TTM-EW-1340 |  | Connection of gully pipes (-Superseded-) | 18d | 2017-07-01 | 2017-07-21 | 822-SM-TTM-EW-1330 FF+6d |  |  |  |  | 92d | 0d |  |
| 822-SM-TTM-EW-1350 |  | Install sewer pipe (-Superseded-) | 24d | 2017-07-01 | 2017-07-28 | 822-SM-TTM-EW-1340 FF+6d |  |  |  |  | 92d | 0d |  |
| 822-SM-TTM-EW-1360 |  | Fresh watermain DN 150 connection (-Superseded-) | 24d | 2017-07-15 | 2017-08-11 | 822-SM-TTM-EW-1350 FF+12d |  |  |  |  | 92d | 0d |  |
| 822-SM-TTM-EW-1370 |  | Salt watermain DN 100 connection (-Superseded-) | 24d | 2017-07-15 | 2017-08-11 | 822-SM-TTM-EW-1350 FF+12d |  |  |  |  | 92d | 0d |  |
| 822-SM-TTM-EW-1380 |  | Backfill and lay sub-base (-Superseded-) | 24d | 2017-08-05 | 2017-09-01 | 822-SM-TTM-EW-1360 FF+18d, 822-SM-TTM-EW-1370 FF+18d |  |  |  |  | 92d | 0d |  |
| 822-SM-TTM-EW-1390 |  | Ashpalt laying and road marking (-Superseded-) | 10d | 2017-09-02 | 2017-09-13 | 822-SM-TTM-EW-1380 |  |  |  |  | 92d |  |  |

| ID | WBS | Activity | Type | Duration | Start | Finish | Predecessors | Complete | Planned start | Planned finish | Total float | Free float |
| --- | --- | --- | --- | --- | --- | --- | --- | --- | --- | --- | --- | --- |
|  | 4 | **Zone 8 - Slope side** |  |  | 2017-05-31 | 2017-09-14 |  |  |  |  |  |  |
| 822-SM-TTM-EW-1410 |  | Trial pit and Utilities Detection (-Superseded-) |  | 5d | 2017-05-31 | 2017-06-05 |  |  |  |  | 91d | 0d |
| 822-SM-TTM-EW-1420 |  | Excavation / Shoring for manhole and pipeline (-Superseded-) |  | 60d | 2017-06-02 | 2017-08-10 | 822-SM-TTM-EW-1410 SS+2d |  |  |  | 91d | 0d |
| 822-SM-TTM-EW-1430 |  | Install sewer pipe and manhole construction (-Superseded-) |  | 36d | 2017-06-30 | 2017-08-10 | 822-SM-TTM-EW-1420 FF |  |  |  | 91d | 0d |
| 822-SM-TTM-EW-1440 |  | Backfill and lay sub-base (-Superseded-) |  | 21d | 2017-08-11 | 2017-09-04 | 822-SM-TTM-EW-1430, 822-SM-TTM-EW-1420 |  |  |  | 91d | 0d |
| 822-SM-TTM-EW-1450 |  | Ashpalt laying and road marking (-Superseded-) |  | 9d | 2017-09-05 | 2017-09-14 | 822-SM-TTM-EW-1440 |  |  |  | 91d |  |
|  | 8 | **Submissions and Approval** |  |  | 2016-04-01 | 2017-04-03 |  |  |  |  |  |  |
| 822-SM-TTM-MP-0130B |  | TTM 4 - Demand Note from EMSD |  | 17d | 2016-04-01 A | 2016-04-20 A | 822-SM-TTM-MP-0130A | 100% |  |  |  |  |
| 822-SM-TTM-MP-0130C |  | TTM 4 - TCD review and EPROM Fabrication |  | 51d | 2016-04-21 A | 2016-06-18 A | 822-SM-TTM-MP-0130B, 822-SM-TTM-MP-0130 FF | 100% |  |  |  |  |
| 822-SM-TTM-MP-0130 |  | TTM 4 - EPROM Preparation | level of effort | 87d | 2016-06-01 A | 2016-06-18 A | 822-SM-TTM-MP-0130A SS | 100% | 2016-06-02 | 2016-09-10 |  |  |
| 822-SM-TTM-MP-0130A |  | TTM 4 - Request for EMSD Quotation |  | 19d | 2016-06-01 A | 2016-06-22 A | 822-SM-TTM-MP-0120A | 100% |  |  |  |  |
| 822-SM-TTM-MP-0160 |  | TTM 4 - Excavation Permit (Plan ID 1195914) | level of effort | 92d | 2016-06-01 A | 2016-06-24 A | 822-SM-TTM-MP-0160A SS | 100% | 2016-06-01 | 2016-09-15 |  |  |
| 822-SM-TTM-MP-0160A |  | TTM 4 - TTM Submission |  | 14d | 2016-06-01 A | 2016-06-16 A | 822-SM-TTM-MP-0120A | 100% |  |  |  |  |
| 822-SM-TTM-MP-0160B |  | TTM 4 - TD Advise |  | 39d | 2016-06-01 A | 2016-07-15 A | 822-SM-TTM-MP-0160A | 100% |  |  |  |  |
| 822-SM-TTM-MP-0160C |  | TTM 4 - HKPF Advise |  | 14d | 2016-06-01 A | 2016-06-16 A | 822-SM-TTM-MP-0160A | 100% |  |  |  |  |
| 822-SM-TTM-MP-0160D |  | TTM 4 - Permit Submission and Approval |  | 14d | 2016-06-01 A | 2016-06-16 A | 822-SM-TTM-MP-0160B, 822-SM-TTM-MP-0160C | 100% |  |  |  |  |
| 822-SM-TTM-MP-0160E |  | TTM 4 - Permit Rejected due to Plan Overlap with HyD Works |  | 0d | 2016-06-01 A | 2016-06-01 A | 822-SM-TTM-MP-0160D | 100% |  |  |  |  |
| 822-SM-TTM-MP-0160F |  | TTM 4 - Waiver for Repeated Road Opening |  | 10d | 2016-06-01 A | 2016-06-11 A | 822-SM-TTM-MP-0160E | 100% |  |  |  |  |
| 822-SM-TTM-MP-0120 |  | TTM 4 - SLG Submission | level of effort | 0d | 2016-06-02 A | 2016-06-02 A |  | 100% |  |  |  |  |
| 822-SM-TTM-MP-0120A |  | TTM 4 - Approval of TTMS at SLG |  | 0d | 2016-06-02 A | 2016-06-02 A | 822-SM-TTM-MP-0120 | 100% |  |  |  |  |
| 822-SM-TTM-MP-0140 |  | TTM 4 - TA and GN | level of effort | 14d | 2016-06-03 A | 2016-06-18 A | 822-SM-TTM-MP-0140A SS | 100% |  |  |  |  |
| 822-SM-TTM-MP-0140A |  | TTM 4 - Traffic Advise |  | 14d | 2016-06-03 A | 2016-06-18 A | 822-SM-TTM-MP-0130C FF | 100% |  |  |  |  |
| 822-SM-TTM-MP-0140B |  | TTM 4 - Gazette Notice |  | 14d | 2016-06-03 A | 2016-06-18 A | 822-SM-TTM-MP-0130C FF, 822-SM-TTM-MP-0140 FF | 100% |  |  |  |  |
| 822-SM-TTM-MP-0160G |  | TTM 4 - Permit Submission and Approval |  | 5d | 2016-06-08 A | 2016-06-13 A | 822-SM-TTM-MP-0160F | 100% |  |  |  |  |
| 822-SM-TTM-MP-0165 |  | TTM 4 - Road Work Advise | level of effort | 19d | 2016-06-11 A | 2016-07-02 A | 822-SM-TTM-MP-0165A SS | 100% |  |  |  |  |
| 822-SM-TTM-MP-0165A |  | TTM 4 - RWA Submission and Approval (With CXP C000901) |  | 7d | 2016-06-11 A | 2016-06-18 A | 822-SM-TTM-MP-0130C FF | 100% |  |  |  |  |
| 822-SM-TTM-MP-0160H |  | TTM 4 - Demand Note from HyD and Settlement |  | 10d | 2016-06-14 A | 2016-06-24 A | 822-SM-TTM-MP-0160G | 100% |  |  |  |  |
| 822-SM-TTM-MP-0165C |  | TTM 4 - Ready for Implementation of TTM Stage 4 | milestone | 0d | 2016-06-18 A | 2016-06-18 A | 822-SM-TTM-MP-0130C FF, 822-SM-TTM-MP-0140A, 822-SM-TTM-MP-0140B, 822-SM-TTM-MP-0165A, 822-SM-TTM-MP-0165 | 100% |  |  |  |  |
| 822-SM-TTM-MP-0160J |  | TTM 4 - Permit Issurance | milestone | 0d | 2016-06-24 A | 2016-06-24 A | 822-SM-TTM-MP-0160H, 822-SM-TTM-MP-0160 FF | 100% |  |  |  |  |
| 822-SM-TTM-MP-0165B |  | TTM 4 - RWA Submission and Approval (With XP1195914) |  | 7d | 2016-06-25 A | 2016-07-02 A | 822-SM-TTM-MP-0160J, 822-SM-TTM-MP-0165 FF | 100% |  |  |  |  |
| 822-SM-TTM-MP-0170 |  | TTM 3 - SLG Submission | level of effort | 15d | 2016-07-04 A | 2016-07-20 A | 822-SM-TTM-MP-0170A SS | 100% |  |  |  |  |
| 822-SM-TTM-MP-0170A |  | TTM 3 - Presentation at SLG |  | 1d | 2016-07-04 A | 2016-07-04 A |  | 100% |  |  |  |  |
| 822-SM-TTM-MP-0170B |  | TTM 3 - Approval and Endorsement of TTMS at SLG |  | 14d | 2016-07-05 A | 2016-09-21 A | 822-SM-TTM-MP-0170A, 822-SM-TTM-MP-0170 FF | 100% | 2016-07-05 | 2016-07-20 |  |  |
| 822-SM-TTM-MP-0180 |  | TTM 3 - EPROM Preparation | level of effort | 45d | 2016-09-22 A | 2016-11-30 A | 822-SM-TTM-MP-0180A SS | 100% | 2016-09-09 | 2016-10-31 |  |  |
| 822-SM-TTM-MP-0180A |  | TTM 3 - Request for EMSD Quotation |  | 5d | 2016-09-22 A | 2016-09-27 A | 822-SM-TTM-MP-0170B | 100% | 2016-09-09 | 2016-09-14 |  |  |
| 822-SM-TTM-MP-0180B |  | TTM 3 - Demand Note from EMSD |  | 5d | 2016-09-28 A | 2016-10-22 A | 822-SM-TTM-MP-0180A | 100% | 2016-09-15 | 2016-09-20 |  |  |
| 822-SM-TTM-MP-0210 |  | TTM 6 - SLG Submission | level of effort | 15d | 2016-10-15 A | 2016-12-13 A | 822-SM-TTM-MP-0210A SS | 100% | 2016-10-03 | 2016-10-19 |  |  |
| 822-SM-TTM-MP-0210A |  | TTM 6 - Presentation at SLG |  | 1d | 2016-10-15 A | 2016-10-15 A | 822-SM-TTM-MP-0180B FF | 100% | 2016-10-03 | 2016-10-03 |  |  |
| 822-SM-TTM-MP-0210B |  | TTM 6 - Approval and Endorsement of TTMS at SLG |  | 14d | 2016-10-17 A | 2016-12-29 A | 822-SM-TTM-MP-0210A, 822-SM-TTM-MP-0210 FF | 100% | 2016-10-04 | 2016-10-19 |  |  |
| 822-SM-TTM-MP-0180C |  | TTM 3 - TCD review and EPROM Fabrication |  | 35d | 2016-10-24 A | 2016-11-30 A | 822-SM-TTM-MP-0180B, 822-SM-TTM-MP-0180 FF | 100% | 2016-10-04 | 2016-11-12 |  |  |
| 822-SM-TTM-MP-0190 |  | TTM 3 - TA and GN | level of effort | 21d | 2016-11-22 A | 2016-12-15 A | 822-SM-TTM-MP-0190A SS | 100% | 2016-10-20 | 2016-11-12 |  |  |
| 822-SM-TTM-MP-0190A |  | TTM 3 - Traffic Advise |  | 21d | 2016-11-22 A | 2016-12-15 A | 822-SM-TTM-MP-0180C FF | 100% | 2016-10-20 | 2016-11-12 |  |  |
| 822-SM-TTM-MP-0190B |  | TTM 3 - Gazette Notice |  | 21d | 2016-11-22 A | 2016-12-15 A | 822-SM-TTM-MP-0180C FF, 822-SM-TTM-MP-0190 FF | 100% | 2016-10-20 | 2016-11-12 |  |  |
| 822-SM-TTM-MP-0200 |  | TTM 3 - Road Work Advise | level of effort | 7d | 2016-11-23 A | 2016-12-31 A | 822-SM-TTM-MP-0200A SS | 100% | 2016-11-05 | 2016-11-12 |  |  |
| 822-SM-TTM-MP-0200A |  | TTM 3 - RWA Submission and Approval (With CXP C000901) |  | 7d | 2016-11-23 A | 2016-11-30 A | 822-SM-TTM-MP-0180C FF | 100% | 2016-11-05 | 2016-11-12 |  |  |
| 822-SM-TTM-MP-0220 |  | TTM 6 - EPROM Preparation | level of effort | 45d | 2016-12-30 A | 2017-03-30 A | 822-SM-TTM-MP-0220A SS | 100% | 2016-10-20 | 2016-12-10 |  |  |
| 822-SM-TTM-MP-0220A |  | TTM 6 - Request for EMSD Quotation |  | 5d | 2016-12-30 A | 2017-02-15 A | 822-SM-TTM-MP-0210B | 100% | 2016-10-20 | 2016-10-25 |  |  |
| 822-SM-TTM-MP-0200B |  | TTM 3 - Ready for Implementation of TTM Stage 3 | milestone | 0d | 2016-12-31 A | 2016-12-31 A | 822-SM-TTM-MP-0180C, 822-SM-TTM-MP-0190A, 822-SM-TTM-MP-0190B, 822-SM-TTM-MP-0200A, 822-SM-TTM-MP-0200 FF | 100% | 2017-02-01 | 2017-02-01 |  |  |
| 822-SM-TTM-MP-0220B |  | TTM 6 - Demand Note from EMSD |  | 5d | 2017-02-13 A | 2017-03-30 A | 822-SM-TTM-MP-0220A | 100% | 2017-02-07 | 2017-02-11 |  |  |
| 822-SM-TTM-MP-0220C |  | TTM 6 - TCD review and EPROM Fabrication |  | 35d | 2017-02-20 A | 2017-03-30 A | 822-SM-TTM-MP-0220B, 822-SM-TTM-MP-0220 FF | 100% | 2017-03-06 | 2017-04-14 |  |  |
| 822-SM-TTM-MP-0230 |  | TTM 6 - TA and GN | level of effort | 21d | 2017-03-09 A | 2017-04-03 A | 822-SM-TTM-MP-0230A SS | 100% | 2017-03-22 | 2017-04-14 |  |  |
| 822-SM-TTM-MP-0230A |  | TTM 6 - Traffic Advise |  | 21d | 2017-03-09 A | 2017-04-03 A | 822-SM-TTM-MP-0220C FF | 100% | 2017-03-22 | 2017-04-14 |  |  |
| 822-SM-TTM-MP-0230B |  | TTM 6 - Gazette Notice |  | 21d | 2017-03-09 A | 2017-04-03 A | 822-SM-TTM-MP-0220C FF, 822-SM-TTM-MP-0230 FF | 100% | 2017-03-22 | 2017-04-14 |  |  |
| 822-SM-TTM-MP-0240 |  | TTM 6 - Road Work Advise | level of effort | 7d | 2017-03-27 A | 2017-04-03 A | 822-SM-TTM-MP-0240A SS | 100% | 2017-04-07 | 2017-04-14 |  |  |
| 822-SM-TTM-MP-0240A |  | TTM 6 - RWA Submission and Approval (With CXP C000901) |  | 7d | 2017-03-27 A | 2017-04-03 A | 822-SM-TTM-MP-0220C FF | 100% | 2017-04-07 | 2017-04-14 |  |  |
| 822-SM-TTM-MP-0240B |  | TTM 6 - Ready for Implementation of TTM Stage 6 | milestone | 0d | 2017-04-03 A | 2017-04-03 A | 822-SM-TTM-MP-0220C, 822-SM-TTM-MP-0230A, 822-SM-TTM-MP-0230B, 822-SM-TTM-MP-0240A, 822-SM-TTM-MP-0240 FF | 100% | 2017-04-04 | 2017-04-04 |  |  |

| ID | WBS | Activity | Type | Duration | Start | Finish | Predecessors | Complete | Planned start | Planned finish |
| --- | --- | --- | --- | --- | --- | --- | --- | --- | --- | --- |
|  | 5 | **TTM Stage 4** |  |  | 2016-06-20 | 2016-12-21 |  |  |  |  |
| 822-SM-TTM-MP-0150 |  | Implementation of TTM Stage 4 |  | 1d | 2016-06-20 A | 2016-06-20 A | 822-SM-TTM-MP-0165C | 100% |  |  |
|  | 1 | **Site Clearance** |  |  | 2016-06-21 | 2016-07-13 |  |  |  |  |
| 822-SM-TTM-MP-1210A |  | Cable Detection |  | 1d | 2016-06-21 A | 2016-06-21 A | 822-SM-TTM-MP-0150 | 100% |  |  |
| 822-SM-TTM-MP-1210B |  | Breaking of Existing Asphalt Surface (Area Covered by C000901) |  | 3d | 2016-06-22 A | 2016-06-24 A | 822-SM-TTM-MP-1210A | 100% |  |  |
| 822-SM-TTM-MP-1210C |  | Trail Pit Inspection (Area Covered by C000901) |  | 6d | 2016-06-25 A | 2016-07-01 A | 822-SM-TTM-MP-1210B | 100% |  |  |
| 822-SM-TTM-MP-1210D |  | Breaking of Existing Asphalt Surface (Area Covered by XP1195914) |  | 3d | 2016-07-04 A | 2016-07-06 A | 822-SM-TTM-MP-0150, 822-SM-TTM-MP-0165B, 822-SM-TTM-MP-1210C | 100% |  |  |
| 822-SM-TTM-MP-1210E |  | Trail Pit Inspection (Area Covered by XP1195914) |  | 6d | 2016-07-07 A | 2016-07-13 A | 822-SM-TTM-MP-1210D | 100% |  |  |
|  | 2 | **Manhole and Associated Pipe** |  |  | 2016-07-14 | 2016-12-21 |  |  |  |  |
| 822-SM-TTM-MP-1255A |  | Heading Tunnel Adjacent to SM3D | level of effort | 18d | 2016-07-14 A | 2016-08-20 A | 822-SM-TTM-MP-1255A1 SS | 100% | 2016-07-14 | 2016-08-03 |
| 822-SM-TTM-MP-1255A1 |  | Access Shaft Excavation |  | 4d | 2016-07-14 A | 2016-07-18 A | 822-SM-TTM-MP-1210E | 100% |  |  |
| 822-SM-TTM-MP-1255A2 |  | Excavation of Heading tunnel |  | 10d | 2016-07-19 A | 2016-08-08 A | 822-SM-TTM-MP-1255A1 | 100% | 2016-07-19 | 2016-07-29 |
| 822-SM-TTM-MP-1255B |  | Heading Tunnel Adjacent to SM3C | level of effort | 24d | 2016-07-19 A | 2016-10-29 A | 822-SM-TTM-MP-1255B1 SS | 100% | 2016-07-19 | 2016-08-15 |
| 822-SM-TTM-MP-1255B1 |  | Access Shaft Excavation |  | 6d | 2016-07-19 A | 2016-07-25 A | 822-SM-TTM-MP-1255A1 | 100% |  |  |
| 822-SM-TTM-MP-1255B2 |  | Excavation of Heading tunnel |  | 14d | 2016-07-26 A | 2016-10-22 A | 822-SM-TTM-MP-1255B1 | 100% | 2016-07-26 | 2016-08-10 |
| 822-SM-TTM-MP-1255C |  | Manhole SM3B (Modification) | level of effort | 20d | 2016-07-26 A | 2016-09-28 A | 822-SM-TTM-MP-1255C1 SS | 100% | 2016-07-26 | 2016-08-17 |
| 822-SM-TTM-MP-1255C1 |  | Excavation |  | 7d | 2016-07-26 A | 2016-09-13 A | 822-SM-TTM-MP-1255B1 | 100% | 2016-07-26 | 2016-08-02 |
| 822-SM-TTM-MP-1255E |  | Pipe From SM3B to SM3A | level of effort | 18d | 2016-07-26 A | 2016-11-10 A | 822-SM-TTM-MP-1255E1 SS | 100% | 2016-07-26 | 2016-08-15 |
| 822-SM-TTM-MP-1255E1 |  | Excavation |  | 9d | 2016-07-26 A | 2016-11-02 A | 822-SM-TTM-MP-1255B1 | 100% | 2016-07-26 | 2016-08-04 |
| 822-SM-TTM-MP-1255A3 |  | Installation of Pipe and Testing |  | 2d | 2016-08-13 A | 2016-08-18 A | 822-SM-TTM-MP-1255A2 | 100% | 2016-09-05 | 2016-09-06 |
| 822-SM-TTM-MP-1255A4 |  | Grouting of Heading Tunnel |  | 1d | 2016-08-19 A | 2016-08-19 A | 822-SM-TTM-MP-1255A3 | 100% | 2016-09-07 | 2016-09-07 |
| 822-SM-TTM-MP-1255A5 |  | Backfilling of Access Shaft |  | 1d | 2016-08-20 A | 2016-08-20 A | 822-SM-TTM-MP-1255A4, 822-SM-TTM-MP-1255A FF | 100% | 2016-09-08 | 2016-09-08 |
| 822-SM-TTM-MP-1255C2 |  | Blinding Layer |  | 1d | 2016-09-13 A | 2016-09-14 A | 822-SM-TTM-MP-1255C1 | 100% | 2016-09-05 | 2016-09-05 |
| 822-SM-TTM-MP-1255C3 |  | Benching |  | 1d | 2016-09-14 A | 2016-09-15 A | 822-SM-TTM-MP-1255C2 | 100% | 2016-09-06 | 2016-09-06 |
| 822-SM-TTM-MP-1255C4 |  | Installation of Pipe and Testing |  | 1d | 2016-09-15 A | 2016-09-16 A | 822-SM-TTM-MP-1255C3 | 100% | 2016-09-07 | 2016-09-07 |
| 822-SM-TTM-MP-1255C5 |  | Wall and Slab |  | 3d | 2016-09-16 A | 2016-09-20 A | 822-SM-TTM-MP-1255C4 | 100% | 2016-09-08 | 2016-09-10 |
| 822-SM-TTM-MP-1255C6 |  | Access Stem |  | 2d | 2016-09-20 A | 2016-09-22 A | 822-SM-TTM-MP-1255C5 | 100% | 2016-09-12 | 2016-09-13 |
| 822-SM-TTM-MP-1255F |  | Pipe From SM3D to SM3C | level of effort | 18d | 2016-09-20 A | 2016-11-22 A | 822-SM-TTM-MP-1255F1 SS | 100% | 2016-09-09 | 2016-09-29 |
| 822-SM-TTM-MP-1255F1 |  | Excavation |  | 11d | 2016-09-20 A | 2016-10-01 A | 822-SM-TTM-MP-1255A5 | 100% | 2016-09-09 | 2016-09-21 |
| 822-SM-TTM-MP-1255C7 |  | Breaking of Existing Wall and Make good benching |  | 5d | 2016-09-22 A | 2016-09-28 A | 822-SM-TTM-MP-1255C6, 822-SM-TTM-MP-1255C FF | 100% | 2016-09-14 | 2016-09-19 |
| 822-SM-TTM-MP-1255C8 |  | Backfilling |  | 3d | 2016-09-22 A | 2016-09-26 A | 822-SM-TTM-MP-1255C6 | 100% | 2016-09-14 | 2016-09-16 |
| 822-SM-TTM-MP-1255F2 |  | Installation of Pipe and Testing |  | 4d | 2016-10-03 A | 2016-10-06 A | 822-SM-TTM-MP-1255F1 | 100% | 2016-10-01 | 2016-10-05 |
| 822-SM-TTM-MP-1255B3 |  | Installation of Pipe and Testing |  | 2d | 2016-10-24 A | 2016-10-27 A | 822-SM-TTM-MP-1255B2 | 100% | 2016-10-12 | 2016-10-13 |
| 822-SM-TTM-MP-1255D |  | Manhole SM3C (Modification) | level of effort | 20d | 2016-10-24 A | 2016-11-24 A | 822-SM-TTM-MP-1255D1 SS | 100% | 2016-10-12 | 2016-11-03 |
| 822-SM-TTM-MP-1255D1 |  | Excavation |  | 7d | 2016-10-24 A | 2016-10-31 A | 822-SM-TTM-MP-1255A5, 822-SM-TTM-MP-1255B2 | 100% | 2016-10-12 | 2016-10-19 |
| 822-SM-TTM-MP-1255B4 |  | Grouting of Heading Tunnel |  | 1d | 2016-10-28 A | 2016-10-28 A | 822-SM-TTM-MP-1255B3 | 100% | 2016-10-14 | 2016-10-14 |
| 822-SM-TTM-MP-1255B5 |  | Backfilling of Access Shaft |  | 1d | 2016-10-29 A | 2016-10-29 A | 822-SM-TTM-MP-1255B4, 822-SM-TTM-MP-1255B FF | 100% | 2016-10-15 | 2016-10-15 |
| 822-SM-TTM-MP-1255G |  | Pipe From SM3C to SM3B | level of effort | 16d | 2016-10-31 A | 2016-11-30 A | 822-SM-TTM-MP-1255G1 SS | 100% | 2016-10-20 | 2016-11-07 |
| 822-SM-TTM-MP-1255G1 |  | Excavation |  | 9d | 2016-10-31 A | 2016-11-22 A | 822-SM-TTM-MP-1255B5, 822-SM-TTM-MP-1255D1 | 100% | 2016-10-20 | 2016-10-29 |
| 822-SM-TTM-MP-1255E2 |  | Installation of Pipe and Testing |  | 4d | 2016-11-03 A | 2016-11-07 A | 822-SM-TTM-MP-1255E1 | 100% | 2016-10-06 | 2016-10-10 |
| 822-SM-TTM-MP-1255E3 |  | Backfilling |  | 3d | 2016-11-08 A | 2016-11-10 A | 822-SM-TTM-MP-1255C8 FF, 822-SM-TTM-MP-1255E2, 822-SM-TTM-MP-1255E FF | 100% | 2016-10-11 | 2016-10-13 |
| 822-SM-TTM-MP-1255D2 |  | Blinding Layer |  | 1d | 2016-11-10 A | 2016-11-10 A | 822-SM-TTM-MP-1255D1 | 100% | 2016-10-20 | 2016-10-20 |
| 822-SM-TTM-MP-1255D3 |  | Benching |  | 1d | 2016-11-11 A | 2016-11-11 A | 822-SM-TTM-MP-1255D2 | 100% | 2016-10-21 | 2016-10-21 |
| 822-SM-TTM-MP-1255D4 |  | Installation of Pipe and Testing |  | 1d | 2016-11-12 A | 2016-11-12 A | 822-SM-TTM-MP-1255D3 | 100% | 2016-10-22 | 2016-10-22 |
| 822-SM-TTM-MP-1255D5 |  | Wall and Slab |  | 3d | 2016-11-14 A | 2016-11-16 A | 822-SM-TTM-MP-1255D4 | 100% | 2016-10-24 | 2016-10-26 |
| 822-SM-TTM-MP-1255D6 |  | Access Stem |  | 2d | 2016-11-17 A | 2016-12-21 A | 822-SM-TTM-MP-1255D5 | 100% | 2016-10-27 | 2016-10-28 |
| 822-SM-TTM-MP-1255D7 |  | Breaking of Existing Wall and Make good benching |  | 5d | 2016-11-19 A | 2016-11-24 A | 822-SM-TTM-MP-1255D6, 822-SM-TTM-MP-1255D FF, 822-SM-TTM-MP-1255C7 | 100% | 2016-10-29 | 2016-11-03 |
| 822-SM-TTM-MP-1255D8 |  | Backfilling |  | 3d | 2016-11-19 A | 2016-11-22 A | 822-SM-TTM-MP-1255D7 SS | 100% | 2016-10-29 | 2016-11-01 |
| 822-SM-TTM-MP-1255F3 |  | Backfilling |  | 3d | 2016-11-19 A | 2016-11-22 A | 822-SM-TTM-MP-1255D8 FF, 822-SM-TTM-MP-1255F2, 822-SM-TTM-MP-1255F FF | 100% | 2016-10-29 | 2016-11-01 |
| 822-SM-TTM-MP-1255G2 |  | Installation of Pipe and Testing |  | 4d | 2016-11-23 A | 2016-11-26 A | 822-SM-TTM-MP-1255G1 | 100% | 2016-10-31 | 2016-11-03 |
| 822-SM-TTM-MP-1255G3 |  | Backfilling |  | 3d | 2016-11-28 A | 2016-11-30 A | 822-SM-TTM-MP-1255G2, 822-SM-TTM-MP-1255G FF | 100% | 2016-11-04 | 2016-11-07 |

| ID | WBS | Activity | Type | Duration | Start | Finish | Predecessors | Complete | Planned start | Planned finish |
| --- | --- | --- | --- | --- | --- | --- | --- | --- | --- | --- |
|  | 3 | **Reinstate Pavement** |  |  | 2016-12-01 | 2016-12-07 |  |  |  |  |
| 822-SM-TTM-MP-1260A |  | Laying Subbase |  | 3d | 2016-12-01 A | 2016-12-03 A | 822-SM-TTM-MP-1255E3, 822-SM-TTM-MP-1255F3, 822-SM-TTM-MP-1255G3 | 100% | 2016-11-08 | 2016-11-10 |
| 822-SM-TTM-MP-1270A |  | Laying Asphalt Surface and Road Marking |  | 3d | 2016-12-05 A | 2016-12-07 A | 822-SM-TTM-MP-1260A | 100% | 2016-11-11 | 2016-11-14 |
| 822-SM-TTM-MP-1270B |  | Ready for Implementation of TTM Stage 3 | milestone | 0d | 2016-12-07 A | 2016-12-07 A | 822-SM-TTM-MP-1270A | 100% | 2016-11-14 | 2016-11-14 |
|  | 6 | **TTM Stage 3** |  |  | 2016-12-12 | 2017-03-30 |  |  |  |  |
| 822-SM-TTM-MP-0205 |  | Implementation of TTM Stage 3 |  | 1d | 2016-12-12 A | 2016-12-22 A | 822-SM-TTM-MP-0200B, 822-SM-TTM-MP-1270B | 100% | 2016-11-15 | 2016-11-15 |
|  | 1 | **Site Clearance** |  |  | 2016-12-23 | 2016-12-30 |  |  |  |  |
| 822-SM-TTM-MP-1310A |  | Cable Detection |  | 1d | 2016-12-23 A | 2016-12-23 A | 822-SM-TTM-MP-0205 | 100% | 2016-11-16 | 2016-11-16 |
| 822-SM-TTM-MP-1310B |  | Breaking of Existing Asphalt Surface (Area Covered by C000901) |  | 2d | 2016-12-24 A | 2016-12-28 A | 822-SM-TTM-MP-1310A | 100% | 2016-11-17 | 2016-11-18 |
| 822-SM-TTM-MP-1310C |  | Trail Pit Inspection (Area Covered by C000901) |  | 4d | 2016-12-29 A | 2016-12-30 A | 822-SM-TTM-MP-1310B | 100% | 2016-11-19 | 2016-11-23 |
|  | 2 | **Excavation** |  |  | 2016-12-31 | 2017-02-17 |  |  |  |  |
| 822-SM-TTM-MP-1320A |  | Excavation and Installation of Shoring (SM3 and FM2) |  | 7d | 2016-12-31 A | 2017-02-09 A | 822-SM-TTM-MP-1310C | 100% | 2016-11-24 | 2016-12-01 |
| 822-SM-TTM-MP-1320B |  | Excavation and Installation of Shoring (SM2A) |  | 7d | 2017-01-09 A | 2017-01-16 A | 822-SM-TTM-MP-1320A | 100% | 2017-01-10 | 2017-01-17 |
| 822-SM-TTM-MP-1320C |  | Excavation and Installation of Shoring (SM2B) |  | 7d | 2017-02-10 A | 2017-02-17 A | 822-SM-TTM-MP-1320B | 100% |  |  |
|  | 3 | **Manhole and Associated Pipe** |  |  | 2017-01-09 | 2017-03-27 |  |  |  |  |
| 822-SM-TTM-MP-1355C |  | Manhole SM2A | level of effort | 20d | 2017-01-09 A | 2017-02-20 A | 822-SM-TTM-MP-1355C1 SS | 100% | 2017-01-18 | 2017-02-13 |
| 822-SM-TTM-MP-1355C1 |  | Blinding Layer |  | 1d | 2017-01-09 A | 2017-01-14 A | 822-SM-TTM-MP-1320B | 100% | 2017-01-18 | 2017-01-18 |
| 822-SM-TTM-MP-1355C2 |  | Benching |  | 1d | 2017-01-16 A | 2017-01-20 A | 822-SM-TTM-MP-1355C1 | 100% | 2017-01-19 | 2017-01-19 |
| 822-SM-TTM-MP-1355C3 |  | Installation of Pipe and Testing |  | 2d | 2017-01-21 A | 2017-01-23 A | 822-SM-TTM-MP-1355C2 | 100% | 2017-01-20 | 2017-01-21 |
| 822-SM-TTM-MP-1355C4 |  | Wall and Slab |  | 3d | 2017-01-23 A | 2017-01-24 A | 822-SM-TTM-MP-1355C3 | 100% | 2017-01-23 | 2017-01-25 |
| 822-SM-TTM-MP-1355C5 |  | Access Stem |  | 2d | 2017-01-25 A | 2017-01-27 A | 822-SM-TTM-MP-1355C4 | 100% | 2017-01-26 | 2017-01-27 |
| 822-SM-TTM-MP-1355A |  | Manhole SM3 | level of effort | 18d | 2017-02-10 A | 2017-03-27 A | 822-SM-TTM-MP-1355A1 SS | 100% | 2017-02-10 | 2017-03-02 |
| 822-SM-TTM-MP-1355A1 |  | Blinding Layer |  | 1d | 2017-02-10 A | 2017-02-10 A | 822-SM-TTM-MP-1320A | 100% |  |  |
| 822-SM-TTM-MP-1355B |  | Manhole FM2 | level of effort | 18d | 2017-02-10 A | 2017-03-27 A | 822-SM-TTM-MP-1355B1 SS | 100% | 2017-02-10 | 2017-03-02 |
| 822-SM-TTM-MP-1355B1 |  | Blinding Layer |  | 1d | 2017-02-10 A | 2017-02-11 A | 822-SM-TTM-MP-1355A1 SS | 100% | 2017-02-10 | 2017-02-10 |
| 822-SM-TTM-MP-1355B2 |  | Benching |  | 1d | 2017-02-10 A | 2017-02-11 A | 822-SM-TTM-MP-1355A2, 822-SM-TTM-MP-1355B1 | 100% | 2017-02-13 | 2017-02-13 |
| 822-SM-TTM-MP-1355B3 |  | Installation of Pipe and Testing |  | 2d | 2017-02-15 A | 2017-02-23 A | 822-SM-TTM-MP-1355A3, 822-SM-TTM-MP-1355B2 | 100% | 2017-02-15 | 2017-02-16 |
| 822-SM-TTM-MP-1355B4 |  | Wall and Slab |  | 3d | 2017-02-15 A | 2017-03-23 A | 822-SM-TTM-MP-1355A5, 822-SM-TTM-MP-1355B3 | 100% | 2017-02-21 | 2017-02-23 |
| 822-SM-TTM-MP-1355C6 |  | Backfilling |  | 4d | 2017-02-16 A | 2017-02-20 A | 822-SM-TTM-MP-1355C5, 822-SM-TTM-MP-1355D5, 822-SM-TTM-MP-1355C FF, 822-SM-TTM-MP-1355A6 | 100% | 2017-03-03 | 2017-03-07 |
| 822-SM-TTM-MP-1355B5 |  | Access Stem |  | 2d | 2017-02-18 A | 2017-03-23 A | 822-SM-TTM-MP-1355B4 | 100% | 2017-02-24 | 2017-02-25 |
| 822-SM-TTM-MP-1355D |  | Manhole SM2B | level of effort | 15d | 2017-02-20 A | 2017-03-27 A | 822-SM-TTM-MP-1355D1 SS | 100% | 2017-02-18 | 2017-03-07 |
| 822-SM-TTM-MP-1355D1 |  | Blinding Layer |  | 1d | 2017-02-20 A | 2017-02-21 A | 822-SM-TTM-MP-1320C | 100% | 2017-02-18 | 2017-02-18 |
| 822-SM-TTM-MP-1355D2 |  | Benching |  | 1d | 2017-02-21 A | 2017-02-22 A | 822-SM-TTM-MP-1355C2, 822-SM-TTM-MP-1355D1 | 100% | 2017-02-20 | 2017-02-20 |
| 822-SM-TTM-MP-1355D3 |  | Installation of Pipe and Testing |  | 2d | 2017-02-23 A | 2017-02-24 A | 822-SM-TTM-MP-1355C3, 822-SM-TTM-MP-1355D2 | 100% | 2017-02-21 | 2017-02-22 |
| 822-SM-TTM-MP-1355A3 |  | Installation of Pipe and Testing |  | 2d | 2017-02-25 A | 2017-02-28 A | 822-SM-TTM-MP-1355A2 | 100% | 2017-02-13 | 2017-02-14 |
| 822-SM-TTM-MP-1355D4 |  | Wall and Slab |  | 3d | 2017-02-25 A | 2017-02-27 A | 822-SM-TTM-MP-1355C5, 822-SM-TTM-MP-1355D3 | 100% | 2017-02-23 | 2017-02-25 |
| 822-SM-TTM-MP-1355B6 |  | Backfilling |  | 4d | 2017-02-27 A | 2017-03-27 A | 822-SM-TTM-MP-1355B5, 822-SM-TTM-MP-1355B FF, 822-SM-TTM-MP-1355A6 FF | 100% | 2017-02-27 | 2017-03-02 |
| 822-SM-TTM-MP-1355D5 |  | Access Stem |  | 2d | 2017-02-27 A | 2017-02-28 A | 822-SM-TTM-MP-1355D4 | 100% |  |  |
| 822-SM-TTM-MP-1355A2 |  | Benching |  | 1d | 2017-03-02 A | 2017-03-04 A | 822-SM-TTM-MP-1355A1 | 100% | 2017-03-02 | 2017-03-02 |
| 822-SM-TTM-MP-1355A4 |  | Wall and Slab |  | 3d | 2017-03-05 A | 2017-03-10 A | 822-SM-TTM-MP-1355A3 | 100% | 2017-03-03 | 2017-03-06 |
| 822-SM-TTM-MP-1355A5 |  | Access Stem |  | 2d | 2017-03-08 A | 2017-03-10 A | 822-SM-TTM-MP-1355A4 | 100% | 2017-03-07 | 2017-03-08 |
| 822-SM-TTM-MP-1355A6 |  | Backfilling |  | 4d | 2017-03-24 A | 2017-03-27 A | 822-SM-TTM-MP-1355A5, 822-SM-TTM-MP-1355B5, 822-SM-TTM-MP-1355A FF | 100% | 2017-03-15 | 2017-03-18 |
| 822-SM-TTM-MP-1355D6 |  | Backfilling |  | 4d | 2017-03-24 A | 2017-03-27 A | 822-SM-TTM-MP-1355D5, 822-SM-TTM-MP-1355D FF, 822-SM-TTM-MP-1355B6 | 100% | 2017-03-20 | 2017-03-23 |

| ID | WBS | Activity | Type | Duration | Start | Finish | Predecessors | Complete | Planned start | Planned finish | Total float | Free float |
| --- | --- | --- | --- | --- | --- | --- | --- | --- | --- | --- | --- | --- |
|  | 4 | **Reinstate Pavement** |  |  | 2017-03-27 | 2017-03-30 |  |  |  |  |  |  |
| 822-SM-TTM-MP-1380A |  | Laying Subbase |  | 2d | 2017-03-27 A | 2017-03-28 A | 822-SM-TTM-MP-1355D6, 822-SM-VB5-MP-1160E3, 822-SM-TTM-MP-1355C6 | 100% | 2017-03-24 | 2017-03-25 |  |  |
| 822-SM-TTM-MP-1390A |  | Laying Asphalt Surface and Road Marking |  | 2d | 2017-03-29 A | 2017-03-30 A | 822-SM-TTM-MP-1380A | 100% | 2017-03-27 | 2017-03-28 |  |  |
| 822-SM-TTM-MP-1390B |  | Ready for Implementation of TTM Stage 6 | milestone | 0d | 2017-03-30 A | 2017-03-30 A | 822-SM-TTM-MP-1390A | 100% | 2017-03-28 | 2017-03-28 |  |  |
|  | 7 | **TTM Stage 6** |  |  | 2017-04-03 | 2017-06-08 |  |  |  |  |  |  |
| 822-SM-TTM-MP-0245 |  | Implementation of TTM Stage 6 |  | 1d | 2017-04-03 A | 2017-04-03 A | 822-SM-TTM-MP-0240B, 822-SM-TTM-MP-1390B | 100% | 2017-04-05 | 2017-04-05 |  |  |
|  | 1 | **Site Clearance and Excavation** |  |  | 2017-04-05 | 2017-05-03 |  |  |  |  |  |  |
| 822-SM-TTM-MP-1410A |  | Cable Detection |  | 1d | 2017-04-05 A | 2017-04-05 A | 822-SM-TTM-MP-0245 | 100% | 2017-04-06 | 2017-04-06 |  |  |
| 822-SM-TTM-MP-1410B |  | Breaking of Existing Asphalt Surface (Area Covered by C000901) |  | 2d | 2017-04-06 A | 2017-04-08 A | 822-SM-TTM-MP-1410A | 100% | 2017-04-07 | 2017-04-08 |  |  |
| 822-SM-TTM-MP-1410C |  | Trail Pit Inspection (Area Covered by C000901) |  | 4d | 2017-04-10 A | 2017-04-13 A | 822-SM-TTM-MP-1410B | 100% |  |  |  |  |
| 822-SM-TTM-MP-1420A |  | Excavation and Installation of Shoring (SM3 and FM2) |  | 17d | 2017-04-14 A | 2017-05-03 A | 822-SM-TTM-MP-1410C | 100% |  |  |  |  |
|  | 2 | **Manhole and Associated Pipe** |  |  | 2017-05-04 | 2017-06-03 |  |  |  |  |  |  |
| 822-SM-TTM-MP-1430 |  | Manhole FM3 | level of effort | 16d | 2017-05-04 A | 2017-05-30 A | 822-SM-TTM-MP-1430A SS | 100% | 2017-05-04 | 2017-05-22 |  |  |
| 822-SM-TTM-MP-1430A |  | Blinding Layer |  | 1d | 2017-05-04 A | 2017-05-05 A | 822-SM-TTM-MP-1420A | 100% | 2017-05-04 | 2017-05-04 |  |  |
| 822-SM-TTM-MP-1430B |  | Benching |  | 2d | 2017-05-06 A | 2017-05-07 A | 822-SM-TTM-MP-1430A | 100% | 2017-05-05 | 2017-05-06 |  |  |
| 822-SM-TTM-MP-1430C |  | Installation of Pipe and Testing |  | 3d | 2017-05-08 A | 2017-05-12 A | 822-SM-TTM-MP-1430B | 100% | 2017-05-08 | 2017-05-10 |  |  |
| 822-SM-TTM-MP-1430D |  | Wall and Slab |  | 3d | 2017-05-13 A | 2017-05-18 A | 822-SM-TTM-MP-1430C | 100% | 2017-05-11 | 2017-05-13 |  |  |
| 822-SM-TTM-MP-1430E |  | Access Stem |  | 2d | 2017-05-19 A | 2017-05-23 A | 822-SM-TTM-MP-1430D | 100% | 2017-05-15 | 2017-05-16 |  |  |
| 822-SM-TTM-MP-1430F |  | Backfilling |  | 5d | 2017-05-24 A | 2017-05-28 A | 822-SM-TTM-MP-1430E, 822-SM-TTM-MP-1430 FF, 822-SM-TTM-MP-1255G4 | 100% | 2017-05-17 | 2017-05-22 |  |  |
| 822-SM-TTM-MP-1255G4 |  | Undertake CCTV Investigation |  | 4d | 2017-05-31 | 2017-06-03 | 822-SM-TTM-MP-1430C |  |  |  | -1118.12d | 0d |
|  | 3 | **Reinstate Pavement** |  |  | 2017-06-05 | 2017-06-08 |  |  |  |  |  |  |
| 822-SM-TTM-MP-1440A |  | Laying Subbase |  | 2d | 2017-06-05 | 2017-06-06 | 822-SM-TTM-MP-1430F |  |  |  | -1118.12d | 0d |
| 822-SM-TTM-MP-1450A |  | Laying Asphalt Surface and Road Marking |  | 2d | 2017-06-07 | 2017-06-08 | 822-SM-TTM-MP-1440A |  |  |  | -1118.12d | 0d |
| 822-SM-TTM-MP-1450B |  | Completion of Drianage and Sewerage at Carriageway | milestone | 0d | 2017-06-08 | 2017-06-08 | 822-SM-TTM-MP-1450A |  |  |  | -1118.12d | 0d |

| WBS | Activity |
| --- | --- |
| 9 | **Additional Programmes** |

## Activity codes

| Code | Value | Meaning |
| --- | --- | --- |
| Contract Key Dates | 01 | To hide |
| TimeChainage | 01 | Main Tunnel |
