# XRL821 - Shek Yam to Mei Lai Road Tunnels (RMP Ver.B Rev.3) (May-15)

Schedule from Primavera P6, 2010-07-12 to 2016-05-10, data date 2015-05-31, A marks actual dates.
started 24 Nov 10. / Version: 29 Nov 10 - 8 Dec 10 logic and sequence to 3 Nov 10 T/C diagram. / 9 Dec - xx Dec 10 resourcing

## Calendars

- 1 - 821 Design & Tunnel works (6 Work day & Public Holiday): Mon-Sat 08:00-12:00, 13:00-17:00; Sun off. Exceptions (off unless hours are given): 2010-09-23, 2010-10-01, 2010-10-15 08:00-12:00, 13:00-17:00, 2010-10-16, 2010-12-24 08:00-12:00, 13:00-17:00, 2010-12-25, 2010-12-27, 2010-12-31 08:00-12:00, 13:00-17:00, 2011-01-01, 2011-01-03 to 2011-01-04 08:00-12:00, 13:00-17:00, 2011-01-05 to 2011-01-06 08:00-16:00, 2011-02-03 to 2011-02-05, 2011-04-05, 2011-04-22 to 2011-04-23, 2011-04-25, 2011-05-02, 2011-05-10, 2011-06-06, 2011-07-01, 2011-09-13, 2011-09-30 08:00-12:00, 13:00-17:00, 2011-10-01, 2011-10-05, 2011-12-26 to 2011-12-27, 2012-01-02, 2012-01-23 to 2012-01-25, 2012-04-04, 2012-04-06 to 2012-04-07, 2012-04-09, 2012-04-27 08:00-12:00, 13:00-17:00, 2012-04-28, 2012-05-01, 2012-06-22 08:00-12:00, 13:00-17:00, 2012-06-23, 2012-07-02, 2012-10-01 to 2012-10-02, 2012-10-23, 2012-12-25 to 2012-12-26, 2013-01-01, 2013-02-11 to 2013-02-13, 2013-03-29 to 2013-03-30, 2013-04-01, 2013-04-04, 2013-05-01, 2013-05-17, 2013-06-12, 2013-07-01, 2013-09-20, 2013-10-01, 2013-10-14, 2013-12-25 to 2013-12-26, 2014-01-01, 2014-01-31 to 2014-02-01, 2014-02-03, 2014-04-04 08:00-12:00, 13:00-17:00, 2014-04-05, 2014-04-18 to 2014-04-19, 2014-04-21, 2014-05-01, 2014-05-06, 2014-06-02, 2014-07-01, 2014-09-09, 2014-10-01 to 2014-10-02, 2014-12-25 to 2014-12-26, 2015-01-01, 2015-02-19 to 2015-02-21, 2015-04-03 to 2015-04-04, 2015-04-06 to 2015-04-07, 2015-05-01, 2015-05-25, 2015-06-19 08:00-12:00, 13:00-17:00, 2015-06-20, 2015-07-01, 2015-09-28, 2015-10-01, 2015-10-21, 2015-12-25 to 2015-12-26, 2016-01-01, 2016-02-08 to 2016-02-10, 2016-03-25 to 2016-03-26, 2016-03-28, 2016-04-04, 2016-05-02.
- 2 - 821 Calendar Day: Mon-Sun 08:00-12:00, 13:00-17:00. Exceptions (off unless hours are given): 2010-12-24 08:00-12:00, 13:00-17:00.
- 3 - 821 VB & External (6 Work day &10d incl. weath. May-Oct): Mon-Sat 08:00-12:00, 13:00-17:00; Sun off. Exceptions (off unless hours are given): 2010-08-09 to 2010-08-10, 2010-09-09 to 2010-09-10, 2010-09-23, 2010-10-01, 2010-10-11, 2010-10-15 08:00-12:00, 13:00-17:00, 2010-10-16, 2010-12-24 08:00-12:00, 13:00-17:00, 2010-12-25, 2010-12-27, 2010-12-31 08:00-12:00, 13:00-17:00, 2011-01-01, 2011-01-03 to 2011-01-05 08:00-12:00, 13:00-17:00, 2011-01-27 08:00-12:00, 13:00-19:00, 2011-02-03 to 2011-02-05, 2011-04-05, 2011-04-22 to 2011-04-23, 2011-04-25, 2011-05-02, 2011-05-10 to 2011-05-11, 2011-06-06, 2011-06-10, 2011-06-25, 2011-07-01, 2011-07-23, 2011-08-09 to 2011-08-10, 2011-09-13, 2011-09-30 08:00-16:00, 2011-10-01, 2011-10-05, 2011-10-10 to 2011-10-11, 2011-10-28 to 2011-10-29, 2011-12-26 to 2011-12-27, 2012-01-02, 2012-01-23 to 2012-01-25, 2012-04-04, 2012-04-06 to 2012-04-07, 2012-04-09, 2012-04-27 08:00-12:00, 13:00-17:00, 2012-04-28, 2012-05-01, 2012-05-10, 2012-06-11, 2012-06-22 08:00-12:00, 13:00-17:00, 2012-06-23, 2012-07-02, 2012-07-10 to 2012-07-11, 2012-08-10 to 2012-08-11, 2012-09-10 to 2012-09-11, 2012-10-01 to 2012-10-02, 2012-10-09 to 2012-10-10, 2012-10-23, 2012-12-25 to 2012-12-26, 2013-01-01, 2013-02-11 to 2013-02-13, 2013-03-29 to 2013-03-30, 2013-04-01, 2013-04-04, 2013-05-01, 2013-05-10, 2013-05-17, 2013-06-10, 2013-06-12, 2013-07-01, 2013-07-10 to 2013-07-11, 2013-08-10, 2013-08-12, 2013-09-10 to 2013-09-11, 2013-09-20, 2013-10-01, 2013-10-10 to 2013-10-11, 2013-10-14, 2013-12-25 to 2013-12-26, 2014-01-01, 2014-01-31 to 2014-02-01, 2014-02-03, 2014-04-04 08:00-12:00, 13:00-17:00, 2014-04-05, 2014-04-18 to 2014-04-19, 2014-04-21, 2014-05-01, 2014-05-06, 2014-05-10, 2014-06-02, 2014-06-10, 2014-07-01, 2014-07-10 to 2014-07-11, 2014-08-11 to 2014-08-12, 2014-09-09 to 2014-09-11, 2014-10-01 to 2014-10-02, 2014-10-10 to 2014-10-11, 2014-12-25 to 2014-12-26, 2015-01-01, 2015-02-19 to 2015-02-21, 2015-04-03 to 2015-04-04, 2015-04-06 to 2015-04-07, 2015-05-01, 2015-05-11, 2015-05-25, 2015-06-19 08:00-12:00, 13:00-17:00, 2015-06-20, 2015-07-01, 2015-09-28, 2015-10-01, 2015-10-21, 2015-12-25 to 2015-12-26, 2016-01-01, 2016-02-08 to 2016-02-10, 2016-03-25 to 2016-03-26, 2016-03-28, 2016-04-04, 2016-05-02.
- 820 - Cal9(N) (+235m) (for 821 VB, R2_TBM235_15Jun12): Mon-Sat 08:00-12:00, 13:00-17:00; Sun off. Exceptions (off unless hours are given): 2010-07-20, 2010-08-10, 2010-08-20, 2010-09-10, 2010-09-20, 2010-09-23, 2010-10-01, 2010-10-15, 2010-12-22, 2010-12-24, 2010-12-27, 2010-12-31, 2011-01-31 to 2011-02-04, 2011-04-05, 2011-04-08, 2011-04-20, 2011-05-02, 2011-05-09 to 2011-05-10, 2011-05-20, 2011-06-06, 2011-06-10, 2011-06-20, 2011-07-01, 2011-07-08, 2011-07-20, 2011-08-10, 2011-08-19, 2011-09-09, 2011-09-13, 2011-09-20, 2011-09-30, 2011-10-05, 2011-12-26 to 2011-12-27, 2012-01-02, 2012-01-23 to 2012-01-27, 2012-04-06, 2012-04-09, 2012-04-10 08:00-12:00, 13:00-17:00, 2012-04-20 08:00-12:00, 13:00-17:00, 2012-04-27, 2012-05-01, 2012-05-10 08:00-12:00, 13:00-17:00, 2012-05-18 08:00-12:00, 13:00-17:00, 2012-06-08 08:00-12:00, 13:00-17:00, 2012-06-20 08:00-12:00, 13:00-17:00, 2012-06-22, 2012-07-02, 2012-07-10 08:00-12:00, 13:00-17:00, 2012-07-20 08:00-12:00, 13:00-17:00, 2012-08-10 08:00-12:00, 13:00-17:00, 2012-08-20 08:00-12:00, 13:00-17:00, 2012-09-10, 2012-09-11 to 2012-09-15 08:00-12:00, 13:00-17:00, 2012-09-17 to 2012-09-19 08:00-12:00, 13:00-17:00, 2012-09-20, 2012-09-21 to 2012-09-22 08:00-12:00, 13:00-17:00, 2012-09-24 08:00-12:00, 13:00-17:00, 2012-10-01 to 2012-10-02, 2012-10-23, 2012-10-27 08:00-16:00, 2012-10-29 to 2012-10-30 08:00-16:00, 2012-10-31 to 2012-11-03, 2012-11-05 to 2012-11-10, 2012-11-12 to 2012-11-17, 2012-11-19 to 2012-11-24, 2012-11-26 to 2012-12-01, 2012-12-03 to 2012-12-08, 2012-12-10 to 2012-12-14, 2012-12-21, 2012-12-25 to 2012-12-26, 2013-01-01, 2013-02-11 to 2013-02-15, 2013-03-29, 2013-04-01, 2013-04-03, 2013-04-10, 2013-04-19, 2013-05-01, 2013-05-10, 2013-05-17, 2013-05-20, 2013-06-10, 2013-06-12, 2013-06-20, 2013-07-01, 2013-07-10, 2013-07-19, 2013-08-09, 2013-08-20, 2013-08-30 to 2013-08-31, 2013-09-02 to 2013-09-07 08:00-12:00, 13:00-17:00, 2013-09-09 08:00-12:00, 13:00-17:00, 2013-09-10, 2013-09-11 to 2013-09-14 08:00-12:00, 13:00-17:00, 2013-09-16 to 2013-09-18 08:00-12:00, 13:00-17:00, 2013-09-19 to 2013-09-20, 2013-10-01, 2013-10-02 to 2013-10-05 08:00-16:00, 2013-10-07 to 2013-10-12, 2013-10-14 to 2013-10-19, 2013-10-21 to 2013-10-26, 2013-10-28 to 2013-11-02, 2013-11-04 to 2013-11-09, 2013-11-11 to 2013-11-16, 2013-11-18 to 2013-11-20, 2013-12-25 to 2013-12-26, 2014-01-01, 2014-01-31 to 2014-02-01, 2014-02-03, 2014-02-04 to 2014-02-07 08:00-12:00, 13:00-17:00, 2014-02-26 to 2014-02-28, 2014-04-04 08:00-12:00, 13:00-17:00, 2014-04-05, 2014-04-10, 2014-04-17 to 2014-04-19, 2014-04-21, 2014-05-01, 2014-05-06, 2014-05-09, 2014-05-20, 2014-06-02, 2014-06-10, 2014-06-20, 2014-07-01, 2014-07-10, 2014-07-18, 2014-08-08, 2014-08-20, 2014-09-09 to 2014-09-10, 2014-09-19, 2014-10-01 to 2014-10-02, 2014-12-25 to 2014-12-26, 2015-01-01, 2015-02-16 to 2015-02-20, 2015-04-03, 2015-04-06 to 2015-04-07, 2015-04-10, 2015-04-20, 2015-05-01, 2015-05-08, 2015-05-20, 2015-05-25, 2015-06-10, 2015-06-19, 2015-07-01, 2015-07-10, 2015-07-20, 2015-08-10, 2015-08-20, 2015-09-10, 2015-09-18, 2015-09-28, 2015-10-01, 2015-10-21, 2015-12-25.
- 4 - 821 TBM 21Hrs all day: Mon-Sun 08:00-12:00, 13:00-17:00.
- 820 - Cal9(N)CP81(+235m) (for 821 VB, R2_TBM235_15Jun12): Mon-Sat 08:00-12:00, 13:00-17:00; Sun off. Exceptions (off unless hours are given): 2010-09-23, 2010-10-01, 2010-10-15, 2010-12-24, 2010-12-27, 2010-12-31, 2011-01-03 to 2011-01-07, 2011-04-05, 2011-04-22, 2011-04-25, 2011-05-02, 2011-05-10, 2011-06-06, 2011-07-01, 2011-09-13, 2011-09-30, 2011-10-05, 2011-12-26 to 2011-12-27, 2012-01-02, 2012-01-23 to 2012-01-27, 2012-04-04, 2012-04-06, 2012-04-09, 2012-04-27, 2012-05-01, 2012-06-22, 2012-07-02, 2012-09-10, 2012-09-13 to 2012-09-15 08:00-12:00, 13:00-17:00, 2012-09-17 to 2012-09-19 08:00-12:00, 13:00-17:00, 2012-09-20, 2012-09-21 to 2012-09-22 08:00-12:00, 13:00-17:00, 2012-09-24 to 2012-09-29 08:00-12:00, 13:00-17:00, 2012-10-01 to 2012-10-02, 2012-10-03 to 2012-10-06 08:00-12:00, 13:00-17:00, 2012-10-08 to 2012-10-10 08:00-12:00, 13:00-17:00, 2012-10-23, 2012-10-27 08:00-16:00, 2012-10-29 to 2012-10-30 08:00-16:00, 2012-10-31 to 2012-11-03, 2012-11-05 to 2012-11-10, 2012-11-12 to 2012-11-17, 2012-11-19 to 2012-11-24, 2012-11-26 to 2012-12-01, 2012-12-03 to 2012-12-08, 2012-12-10 to 2012-12-14, 2012-12-21, 2012-12-25 to 2012-12-26, 2013-01-01, 2013-02-11 to 2013-02-15, 2013-03-29, 2013-04-01, 2013-04-04, 2013-05-01, 2013-05-17, 2013-06-12, 2013-07-01, 2013-07-20, 2013-07-25 to 2013-07-27 08:00-12:00, 13:00-17:00, 2013-07-29 to 2013-08-03 08:00-12:00, 13:00-17:00, 2013-08-05 to 2013-08-09 08:00-12:00, 13:00-17:00, 2013-08-10, 2013-08-12 to 2013-08-17 08:00-12:00, 13:00-17:00, 2013-08-19 08:00-12:00, 13:00-17:00, 2013-08-20, 2013-08-21 to 2013-08-24 08:00-12:00, 13:00-17:00, 2013-08-26 to 2013-08-31 08:00-12:00, 13:00-17:00, 2013-09-02 to 2013-09-07 08:00-12:00, 13:00-17:00, 2013-09-10, 2013-09-19 to 2013-09-20, 2013-09-30 to 2013-10-01, 2013-10-02 to 2013-10-05 08:00-16:00, 2013-10-07 to 2013-10-09 08:00-16:00, 2013-10-14, 2013-11-06 to 2013-11-09 08:00-16:00, 2013-11-11 to 2013-11-12 08:00-16:00, 2013-12-21, 2013-12-25 to 2013-12-26, 2014-01-01, 2014-01-31 to 2014-02-01, 2014-02-03, 2014-02-04 to 2014-02-07 08:00-12:00, 13:00-17:00, 2014-04-04, 2014-04-18, 2014-04-21, 2014-05-01, 2014-05-06, 2014-06-02, 2014-07-01, 2014-09-09, 2014-10-01 to 2014-10-02, 2014-12-25 to 2014-12-26, 2015-01-01, 2015-02-16 to 2015-02-20, 2015-04-03, 2015-04-06 to 2015-04-07, 2015-05-01, 2015-05-25, 2015-06-19, 2015-07-01, 2015-09-28, 2015-10-01, 2015-10-21, 2015-12-25, 2016-01-01, 2016-02-08 to 2016-02-10, 2016-03-25, 2016-03-28, 2016-04-04, 2016-05-02.
- 820 - Cal 2 (DRM Ver.A Rev.1): Mon-Sun 08:00-12:00, 13:00-17:00. Exceptions (off unless hours are given): 2014-10-01 to 2014-10-02 08:00-12:00, 13:00-17:00.
- 820 - Cal 3 (DRM Ver.A Rev.1): Mon-Sat 08:00-12:00, 13:00-17:00; Sun off. Exceptions (off unless hours are given): 2010-09-23, 2010-10-01, 2010-10-15 08:00-12:00, 13:00-17:00, 2010-10-16, 2010-12-24 08:00-12:00, 13:00-17:00, 2010-12-25, 2010-12-27, 2010-12-31, 2011-01-03 to 2011-01-05, 2011-01-06 to 2011-01-07 08:00-12:00, 13:00-17:00, 2011-04-05, 2011-04-22 to 2011-04-23, 2011-04-25, 2011-05-02, 2011-05-10, 2011-06-06, 2011-07-01, 2011-09-13, 2011-09-30 08:00-12:00, 13:00-17:00, 2011-10-01, 2011-10-05, 2011-12-24, 2011-12-26, 2011-12-27 08:00-12:00, 13:00-17:00, 2012-01-02, 2012-01-23 to 2012-01-25, 2012-01-26 to 2012-01-27 08:00-12:00, 13:00-17:00, 2012-04-04, 2012-04-06 to 2012-04-07, 2012-04-09, 2012-04-27 08:00-12:00, 13:00-17:00, 2012-04-28, 2012-05-01, 2012-06-22 08:00-12:00, 13:00-17:00, 2012-06-23, 2012-07-02, 2012-10-01 to 2012-10-02, 2012-10-23, 2012-12-25 to 2012-12-26, 2013-01-01, 2013-02-11 to 2013-02-13, 2013-02-14 to 2013-02-15 08:00-12:00, 13:00-17:00, 2013-03-29 to 2013-03-30, 2013-04-01, 2013-04-04, 2013-05-01, 2013-05-17, 2013-06-12, 2013-07-01, 2013-09-20, 2013-10-01, 2013-10-14, 2013-12-25 to 2013-12-26, 2014-01-01, 2014-01-31 to 2014-02-01, 2014-02-03, 2014-02-04 to 2014-02-07 08:00-12:00, 13:00-17:00, 2014-04-04 to 2014-04-05, 2014-04-18 to 2014-04-19, 2014-04-21, 2014-05-01, 2014-05-06, 2014-06-02, 2014-07-01, 2014-09-09, 2014-10-01 to 2014-10-02, 2014-12-25 to 2014-12-26, 2015-01-01, 2015-02-16 to 2015-02-18 08:00-12:00, 13:00-17:00, 2015-02-19 to 2015-02-21, 2015-04-03 to 2015-04-04, 2015-04-06 to 2015-04-07, 2015-05-01, 2015-05-25, 2015-06-19 08:00-12:00, 13:00-17:00, 2015-06-20, 2015-07-01, 2015-09-28, 2015-10-01, 2015-10-21, 2015-12-25 to 2015-12-26, 2016-01-01, 2016-02-08 to 2016-02-10, 2016-03-25, 2016-03-28, 2016-04-04, 2016-05-02.

## Resources

| Resource | Group | Unit |
| --- | --- | --- |
| Concretor | labor |  |
| Welder | labor |  |
| Drainlayer | labor |  |
| Mason | labor |  |
| Metal worker | labor |  |
| Plumber | labor |  |
| Glazier | labor |  |
| Electrician | labor |  |
| Mechanic | labor |  |
| Other Skill Labour (BS / E&M) | labor |  |
| Welding Machine | equipment |  |
| Carpenter | labor |  |
| Backhoe | equipment |  |
| Crane Lorry | equipment |  |
| Plant Operator | labor |  |
| Other Skill Labour (Civil) | labor |  |
| Steel Fixer | labor |  |
| Concrete | material | m3 |
| Contractor Surveyor / Land Surveyor | labor |  |
| Survey Equipment | equipment |  |
| Contractor Technical Staff / Supervisor | labor |  |
| CCTV Equipment | equipment |  |
| Excavation - Soft | material | m3 |
| Rebar | material | T |
| Backhoe with Breaker | equipment |  |
| Shotcrete Set | equipment |  |
| Scaffolder | labor |  |
| Miner | labor |  |
| 2-Boom Jumbo | equipment |  |
| Soft Excavation Volume (m3) | material | m3 |
| Grouting Set | equipment |  |
| Tunneller | labor |  |
| Drilling rig | equipment |  |
| Dump Truck | equipment |  |
| Lining Formwork Platform | equipment |  |
| Concrete Pump Set | equipment |  |
| Truck Lorry | equipment |  |
| Drilling Jumbo | equipment |  |
| Cherry Picker | equipment |  |
| Forklift | equipment |  |
| Shortfirer | labor |  |
| Ganger | labor |  |
| Explosive Truck Driver | labor |  |
| Welder / Fitter | labor |  |
| Tower Crane | equipment |  |
| Excavation - Hard | material | m3 |
| Loader | equipment |  |
| Waterproof Platform | equipment |  |
| Plasterer | labor |  |
| Painter | labor |  |
| TBM Operational Crew | labor |  |
| TBM Maintenance Crew | labor |  |
| TBM | equipment |  |

## Schedule

| ID | WBS | Activity | Type | Duration | Start | Finish | Predecessors | Complete | Planned start | Planned finish | Constraint | Calendar | Cost Centre | Contracts | Sequence | Areas/Rooms | Works Areas |
| --- | --- | --- | --- | --- | --- | --- | --- | --- | --- | --- | --- | --- | --- | --- | --- | --- | --- |
|  | KD | **Contract Requirement** |  |  | 2010-07-12 | 2016-05-10 |  |  |  |  |  |  |  |  |  |  |  |
|  | 1 | **Project Duration** |  |  | 2010-07-12 | 2015-05-10 |  |  |  |  |  |  |  |  |  |  |  |
|  | 1 | **Commencement and Completion Date** |  |  | 2010-07-12 | 2015-05-10 |  |  |  |  |  |  |  |  |  |  |  |
| 8210KD000 |  | Letter of Acceptance | milestone | 0d | 2010-07-12 A | 2010-07-12 A |  | 100% |  |  | mandatory start 2010-07-12 | 2 - 821 Calendar Day | 1 | 821 |  |  |  |
| 8210KD010 |  | Date of Commencement | milestone | 0d | 2010-07-19 A | 2010-07-19 A |  | 100% |  |  | mandatory start 2010-07-19 | 2 - 821 Calendar Day | 1 | 821 |  |  |  |
| 8210KD020 |  | The Whole of the Works (19/15, 10 May '15) | milestone | 0d | 2015-05-10 A | 2015-05-10 A | 8210MSC03, 8210MSA10, 821010960, 821010970, 821014720, 8210MSB13, 8210MSC01, 8210MSA02, 8210MSA07, 821011650, 8210MSD06, 8210MSA03, 8210MSA08, 8210MSD05, 8210MSB05, 8210MSB07, 8210MSB08, 8210MSB12, 8210MSC08, 8210MSC06, 8210MSC05, 8210MSA12, 821010990, 8210KD010 FS+1757d, 8210MSD04, 8210MSB06, 8210MSB09, 8210MSB11a, 8210MSB02, 8210MSB03, 8210MSC04, 8210MSA06, 821010840 FS+144d, 8210MSD07, 821015130, 8210MSA04, 8210MSB10, 8210MSB04, 8210MSC07, 8210MSC02, 8210MSA01, 8210MSA09, 8210MSA11, 821011380, 821012163, 821012173, 8210MSD01, 8210MSD02, 8210MSA05, 821010880, 8210MSD03, 8210MSB01 | 100% |  |  | finish on or before 2015-05-10 | 2 - 821 Calendar Day | 1 | 821 |  |  |  |
|  | 2 | **Critical Dates** |  |  | 2013-06-16 | 2014-06-29 |  |  |  |  |  |  |  |  |  |  |  |
|  | 1 | **Specified Degrees of completion of the Work** |  |  | 2013-06-16 | 2014-06-29 |  |  |  |  |  |  |  |  |  |  |  |
| 8210KD030 |  | Ref 4A Kwai Chung Vehicular Access Adit common areas | milestone | 0d | 2013-06-16 A | 2013-06-16 A | 821017250, 821012465, 8210MSC01, 8210MSC02, 821016314, 821017850, 821017740, 8210MSC06, 8210KD010 FS+987d, 821012290, 821016540, 8210MSC04, 821017940, 8210MSC03, 8210MSC05 | 100% | 2013-08-29 | 2013-08-29 | finish on or before 2013-04-14 | 2 - 821 Calendar Day | 1 | 821 | 1 | COM |  |
| 8210KD040 |  | Ref 4B(Deg 1) VB6 - All rooms & common areas | milestone | 0d | 2013-07-20 A | 2013-07-20 A | 8210KD010 FS+1015d, 821014820, 821012784 | 100% |  |  | mandatory finish 2013-07-20 | 2 - 821 Calendar Day | 1 | 821 | 2 | TECS |  |
| 8210KD060 |  | Ref 4B(Deg 2) VB6 - All rooms & common area | milestone | 0d | 2013-08-29 A | 2013-08-29 A | 821012710, 821012730, 8210KD010 FS+1134d, 821013170 | 100% |  |  | mandatory finish 2013-09-30 | 2 - 821 Calendar Day | 1 | 821 | 2 | TECS |  |
| 8210KD070 |  | Ref 4B(Deg 3) VB6 - All rooms & common area | milestone | 0d | 2013-10-31 A | 2013-10-31 A | 8210KD010 FS+1197d, 821014930, 821013340 | 100% | 2013-11-01 | 2013-11-01 | mandatory finish 2013-11-30 | 2 - 821 Calendar Day | 1 | 821 | 2 | TECS |  |
| 8210KD050 |  | Ref 4C(i) Tunnels from Northern Contract limit to KCVA Adit, both up and down track | milestone | 0d | 2013-11-28 A | 2013-11-28 A | 821013010, 821017360, 821017400, 8210MSB06, 8210MSB02, 8210MSB04, 821012560, 821011280, 8210MSB07, 821013110, 821013320, 8210MSB03, 821011485, 821012970, 821016094, 8210KD010 FS+1078d, 821013945, 821017380, 821011740, 821013990, 8210MSB05, 8210MSB08, 8210MSB09, 821013760, 8210MSB01 | 100% | 2013-11-30 | 2013-11-30 | mandatory finish 2013-11-17 | 2 - 821 Calendar Day | 1 | 821 |  |  |  |
| 8210KD055 |  | Ref 4C(ii) Tunnels from KCVA Adit to Southern Contract limit, both up and down tracks (excl. U/T tunnel under Ref 4D) | milestone | 0d | 2014-01-09 A | 2014-01-09 A | 821017910, 821013840, 821015920, 821012210, 821014270, 821016670, 821017410, 821015900, 821015020, 821014490 | 100% | 2013-12-29 | 2013-12-29 | mandatory finish 2013-12-20 | 2 - 821 Calendar Day | 1 | 821 |  |  |  |
| 8210KD100 |  | Ref 4F(Deg 1) Kwai Chung Vehicular Access Adit - All rooms | milestone | 0d | 2014-03-28 A | 2014-03-28 A | 821012310, 8210MSC07, 8210KD010 FS+1288d | 100% | 2014-01-23 | 2014-01-23 | mandatory finish 2014-01-23 | 2 - 821 Calendar Day | 1 | 821 |  | TECS |  |
| 8210KD110 |  | Ref 4F(Deg 2) Kwai Chung Vehicular Access Adit - All rooms | milestone | 0d | 2014-04-01 A | 2014-04-01 A | 8210KD010 FS+1351d, 821012330 | 100% | 2014-03-28 | 2014-03-28 | mandatory finish 2014-03-30 | 2 - 821 Calendar Day | 1 | 821 |  | TECS |  |
| 8210KD120 |  | Ref 4F(Deg 3) Kwai Chung Vehicular Access Adit - All rooms | milestone | 0d | 2014-04-29 A | 2014-04-29 A | 821012340, 8210KD010 FS+1379d, 821013970 | 100% | 2014-04-27 | 2014-04-27 | mandatory finish 2014-04-27 | 2 - 821 Calendar Day | 1 | 821 |  | TECS |  |
| 8210KD090 |  | Ref 4E Closure of access openings at ctr wall & tunnel wall at j/c interface at KCVA Adit and centre wall at Ch135+600 | milestone | 0d | 2014-05-25 A | 2014-05-25 A | 821011400, 821011495, 8210KD010 FS+1288d, 821011320 | 100% |  |  | mandatory finish 2014-05-31 | 2 - 821 Calendar Day | 1 | 821 |  |  |  |
| 8210KD080 |  | Ref 4D U/T Tunnel from the northern end of the bifurcation chamber to 820 interface | milestone | 0d | 2014-06-29 A | 2014-06-29 A | 821013850, 821014440, 821014560, 821016690, 821014400, 8210KD010 FS+1260d | 100% | 2014-04-18 | 2014-04-18 | mandatory finish 2014-06-29 | 2 - 821 Calendar Day | 1 | 821 |  |  |  |
|  | 3 | **Access Dates** |  |  | 2010-08-02 | 2016-05-10 |  |  |  |  |  |  |  |  |  |  |  |
|  | 1 | **Possession Date** |  |  | 2010-08-02 | 2014-09-01 |  |  |  |  |  |  |  |  |  |  |  |
| 8210AC010 |  | Work Area 11.29C | milestone | 0d | 2010-08-02 A | 2010-08-02 A | 8210KD010 | 100% |  |  | mandatory start 2010-08-02 | 2 - 821 Calendar Day | 1 | 821 |  |  | 11.29C |
| 8210AC020 |  | Work Area 9.1 | milestone | 0d | 2010-08-02 A | 2010-08-02 A | 8210KD010 | 100% |  |  | mandatory start 2010-08-02 | 2 - 821 Calendar Day | 1 | 821 |  |  | 9.1 |
| 8210AC030 |  | Work Area 9.2 | milestone | 0d | 2010-08-02 A | 2010-08-02 A | 8210KD010 | 100% |  |  | mandatory start 2010-08-02 | 2 - 821 Calendar Day | 1 | 821 |  |  | 9.2 |
| 8210AC040 |  | Work Area 9.4A | milestone | 0d | 2010-08-02 A | 2010-08-02 A | 8210KD010 | 100% |  |  | mandatory start 2010-08-02 | 2 - 821 Calendar Day | 1 | 821 |  |  | 9.4A |
| 8210AC050 |  | Work Area 9.4B | milestone | 0d | 2010-08-02 A | 2010-08-02 A | 8210KD010 | 100% |  |  | mandatory start 2010-08-02 | 2 - 821 Calendar Day | 1 | 821 |  |  | 9.4B |
| 8210AC080 |  | Work Area 9.2A | milestone | 0d | 2010-09-20 A | 2010-09-20 A | 8210KD010 | 100% |  |  | mandatory start 2010-09-20 | 2 - 821 Calendar Day | 1 | 821 |  |  | 9.2A |
| 8210AC085 |  | Works Area 6.8 - Take over the two explosive rooms | milestone | 0d | 2010-09-26 A | 2010-09-26 A | 8210KD010 | 100% |  |  | mandatory start 2010-09-26 | 2 - 821 Calendar Day | 1 | 821 |  |  |  |
| 8210AC090 |  | Work Area 9.4A Re-possession | milestone | 0d | 2014-09-01 A | 2014-09-01 A | 8210KD010 | 100% |  |  | mandatory start 2014-09-01 | 2 - 821 Calendar Day | 1 | 821 |  |  | 9.4A |
| 8210AC100 |  | Work Area 9.4B Re-possession | milestone | 0d | 2014-09-01 A | 2014-09-01 A | 8210KD010 | 100% |  |  | mandatory start 2014-09-01 | 2 - 821 Calendar Day | 1 | 821 |  |  | 9.4B |

Notes:
- 8210KD050: Problems Encountered: - Dismantle of TBM and transfer to / Nam Cheong Shaft.
- 8210KD055: Problems Encountered: - Dismantle of TBM and transfer to / Nam Cheong Shaft.
- 8210KD080: Problems Encountered: - Cross Passage No. 82 is delayed by TBM / arrival on site.

| ID | WBS | Activity | Type | Duration | Start | Finish | Predecessors | Complete | Planned start | Planned finish | Total float | Constraint | Calendar | Cost Centre | Contracts | Works Areas | Sub-location | Areas/Rooms | Sequence |
| --- | --- | --- | --- | --- | --- | --- | --- | --- | --- | --- | --- | --- | --- | --- | --- | --- | --- | --- | --- |
|  | 2 | **Return Date** |  |  | 2013-04-02 | 2016-05-10 |  |  |  |  |  |  |  |  |  |  |  |  |  |
| 8210HO010 |  | Work Area 9.4A | milestone | 0d | 2013-04-02 A | 2013-04-02 A | 8210KD010 | 100% | 2013-02-03 | 2013-02-03 |  | mandatory finish 2013-02-03 | 2 - 821 Calendar Day | 1 | 821 | 9.4A |  |  |  |
| 8210HO020 |  | Work Area 9.4B | milestone | 0d | 2013-04-02 A | 2013-04-02 A | 8210KD010 | 100% | 2013-02-03 | 2013-02-03 |  | mandatory finish 2013-02-03 | 2 - 821 Calendar Day | 1 | 821 | 9.4B |  |  |  |
| 821HOC030 |  | Works Area 6.8 - Take over the two explosive rooms | milestone | 0d | 2013-09-29 A | 2013-09-29 A | 8210KD010 | 100% |  |  |  | mandatory finish 2013-09-29 | 2 - 821 Calendar Day | 1 | 821 |  |  |  |  |
| 8210HO040 |  | Work Area 9.4A 2nd Return | milestone | 0d | 2015-05-10 A | 2015-05-10 A | 8210KD010 | 100% |  |  |  | mandatory finish 2015-05-10 | 2 - 821 Calendar Day | 1 | 821 | 9.4A |  |  |  |
| 8210HO050 |  | Work Area 9.4B 2nd Return | milestone | 0d | 2015-05-10 A | 2015-05-10 A | 8210KD010 | 100% |  |  |  | mandatory finish 2015-05-10 | 2 - 821 Calendar Day | 1 | 821 | 9.4B |  |  |  |
| 8210HO060 |  | Work Area 9.2 | milestone | 0d | 2015-05-10 A | 2015-05-10 A | 8210KD010 | 100% |  |  |  | mandatory finish 2015-05-10 | 2 - 821 Calendar Day | 1 | 821 | 9.2 |  |  |  |
| 8210HO080 |  | Work Area 11.29C | milestone | 0d | 2015-05-10 A | 2015-05-10 A | 8210KD010, 821011650, 821017580 | 100% |  |  |  | mandatory finish 2015-05-10 | 2 - 821 Calendar Day | 1 | 821 | 11.29C |  |  |  |
| 8210HO090 |  | Work Area 9.2A | milestone | 0d | 2015-05-10 A | 2015-05-10 A | 8210KD010 | 100% |  |  |  | mandatory finish 2015-05-10 | 2 - 821 Calendar Day | 1 | 821 | 9.2A |  |  |  |
| 8210HO100 |  | Work Area 9.1 | milestone | 0d | 2016-05-10 | 2016-05-10 | 8210KD010 |  |  |  | 0d | mandatory finish 2016-05-10 | 2 - 821 Calendar Day | 1 | 821 | 9.1 |  |  |  |
|  | 4 | **Programme Dates** |  |  | 2010-11-28 | 2015-01-28 |  |  |  |  |  |  |  |  |  |  |  |  |  |
|  | 1 | **TBM Breakthrough at 820/821 interface** |  |  | 2012-07-29 | 2013-07-23 |  |  |  |  |  |  |  |  |  |  |  |  |  |
| 8210IF500 |  | TBM2 (S-631-1) Break through at D/T | milestone | 0d | 2012-07-29 A | 2012-07-29 A | 8210KD010, 821013630 FS-1d | 100% |  |  |  | start on or before 2012-07-24 | 2 - 821 Calendar Day | 1 | 821 |  | TUNS | DT |  |
| 8210IF510 |  | Date for TBM2 (S-631-1) removal at D/T | milestone | 0d | 2013-01-30 A | 2013-01-30 A | 821013530, 8210KD010 | 100% |  |  |  | mandatory finish 2013-01-30 | 2 - 821 Calendar Day | 1 | 821 |  | TUNS | DT |  |
| 8210IF520 |  | TBM2 (S-631-1) Break through at U/T | milestone | 0d | 2013-07-23 A | 2013-07-23 A | 8210KD010, 821013650 FS-1d | 100% |  |  |  | start on or before 2013-07-09 | 2 - 821 Calendar Day | 1 | 821 |  | TUNS | UT |  |
|  | 2 | **Schedule of Power On Date** |  |  | 2014-06-01 | 2014-06-01 |  |  |  |  |  |  |  |  |  |  |  |  |  |
| 8210PM045 |  | Permanent LV Power on (VB6) | milestone | 0d | 2014-06-01 A | 2014-06-01 A | 8210KD010 | 100% |  |  |  | mandatory finish 2014-06-01 | 2 - 821 Calendar Day | 1 | 821 |  |  | PSR |  |
|  | 3 | **Temporary Access Opening for Designated Contractors** |  |  | 2013-07-22 | 2013-12-29 |  |  |  |  |  |  |  |  |  |  |  |  |  |
| 8210PM005 |  | Provide Tunnel wall access opening at the j/c of KCVA Adit & U/T Tunnel | milestone | 0d | 2013-07-22 A | 2013-07-22 A | 8210KD010, 8210KD050 | 100% |  |  |  | mandatory start 2013-07-22 | 2 - 821 Calendar Day | 1 | 821 |  |  |  | 1 |
| 8210PM010 |  | Provide centre wall access opening at the j/c of KCVA Adit | milestone | 0d | 2013-07-22 A | 2013-07-22 A | 8210KD050, 8210KD010 | 100% |  |  |  | mandatory start 2013-07-22 | 2 - 821 Calendar Day | 1 | 821 |  |  |  | 2 |
| 8210PM015 |  | Provide centre wall access opening at Ch135+600 | milestone | 0d | 2013-08-19 A | 2013-08-19 A | 8210KD010, 8210KD050 | 100% |  |  |  | mandatory start 2013-08-19 | 2 - 821 Calendar Day | 1 | 821 |  |  |  |  |
| 8210PM006 |  | Return Tunnel wall access opening at the j/c of KCVA Adit & U/T Tunnel | milestone | 0d | 2013-12-01 A | 2013-12-01 A | 8210KD010 | 100% |  |  |  | mandatory finish 2013-12-01 | 2 - 821 Calendar Day | 1 | 821 |  |  |  | 1 |
| 8210PM011 |  | Return centre wall access opening at the j/c of KCVA Adit | milestone | 0d | 2013-12-29 A | 2013-12-29 A | 8210KD010 | 100% |  |  |  | mandatory finish 2013-12-29 | 2 - 821 Calendar Day | 1 | 821 |  |  |  | 2 |
| 8210PM016 |  | Return centre wall access opening at Ch135+600 | milestone | 0d | 2013-12-29 A | 2013-12-29 A | 8210KD010 | 100% |  |  |  |  | 2 - 821 Calendar Day | 1 | 821 |  |  |  |  |

| ID | WBS | Activity | Type | Duration | Start | Finish | Predecessors | Complete | Planned start | Planned finish | Constraint | Calendar | Cost Centre | Contracts | Sequence |
| --- | --- | --- | --- | --- | --- | --- | --- | --- | --- | --- | --- | --- | --- | --- | --- |
|  | 4 | **Schedule of Closing Temporary Tunnel Access** |  |  | 2014-05-02 | 2014-07-06 |  |  |  |  |  |  |  |  |  |
| 8210PM0105 |  | Centre wall access opening at approximately Ch135+600 | milestone | 0d | 2014-05-02 A | 2014-05-02 A |  | 100% |  |  | start on 2014-04-01 | 2 - 821 Calendar Day | 1 | 821 |  |
| 8210PM035 |  | Centre wall access opening at approximately Ch135+600 | milestone | 0d | 2014-05-25 A | 2014-05-25 A | 821011320 | 100% | 2014-07-31 | 2014-07-31 | finish on 2014-05-25 | 2 - 821 Calendar Day | 1 | 821 |  |
| 8210PM025 |  | Tunnel wall access opening at the j/c of KCVA Adit & U/T Tunnel | milestone | 0d | 2014-07-06 A | 2014-07-06 A | 8210KD010 | 100% |  |  | finish on 2014-05-31 | 2 - 821 Calendar Day | 1 | 821 |  |
| 8210PM030 |  | Centre wall access opening at the j/c of KCVA Adit | milestone | 0d | 2014-07-06 A | 2014-07-06 A | 821011400 | 100% |  |  | finish on 2014-05-31 | 2 - 821 Calendar Day | 1 | 821 |  |
|  | 5 | **Works Required for Statutory Inspection** |  |  | 2015-01-28 | 2015-01-28 |  |  |  |  |  |  |  |  |  |
| 8210PM070 |  | Complete all extl water works within KC Vent Bldg Site & connect to govt water main | milestone | 0d | 2015-01-28 A | 2015-01-28 A | 8210KD010, 821015260, 821015220, 821015210 | 100% |  |  | mandatory finish 2014-06-01 | 2 - 821 Calendar Day | 1 | 821 |  |
| 8210PM075 |  | Complete all ext. telephone drawpits & ducts within KC Vent Bldg Site | milestone | 0d | 2015-01-28 A | 2015-01-28 A | 821015230, 8210KD010 | 100% |  |  | mandatory finish 2014-07-06 | 2 - 821 Calendar Day | 1 | 821 |  |
|  | 6 | **Other Requirement** |  |  | 2010-11-28 | 2013-09-29 |  |  |  |  |  |  |  |  |  |
| 8210PM055 |  | Complete erection of Engineer's office and provide office furniture | milestone | 0d | 2010-11-28 A | 2010-11-28 A | 821012770, 8210KD010 | 100% |  |  | mandatory finish 2010-11-28 | 2 - 821 Calendar Day | 1 | 821 | 1 |
| 8210PM170 |  | Contractor 830 occupy Fire Fighting Staging Area & Plant Room | milestone | 0d | 2013-07-22 A | 2013-07-22 A | 8210KD010, 8210KD050, 821013110 | 100% |  |  | mandatory start 2013-07-22 | 2 - 821 Calendar Day | 1 | 821 |  |
| 8210PM060 |  | Return of the two explosive rooms at Area 6.8 | milestone | 0d | 2013-09-29 A | 2013-09-29 A | 8210KD010 | 100% |  |  | mandatory finish 2013-09-29 | 2 - 821 Calendar Day | 1 | 821 | 1 |
|  | 5 | **Access Dates for Designated Contractors** |  |  | 2013-04-01 | 2014-06-30 |  |  |  |  |  |  |  |  |  |
|  | 1 | **827 - Cross Passage Door** |  |  | 2013-11-29 | 2014-04-28 |  |  |  |  |  |  |  |  |  |
| 8210IF010 |  | 827 - All cross passages for door frame installation, U/T& D/T from the Northern limit to KCVA Adit (incl. KCVA Adit) | milestone | 0d | 2013-11-29 A | 2013-11-29 A | 8210KD010 | 100% |  |  | mandatory start 2013-05-20 | 2 - 821 Calendar Day | 1 | 821 |  |
| 8210IF0100 |  | 827 - All cross passages for door frame installation, up & down track from KCVA Adit to the Southern limit | milestone | 0d | 2013-12-30 A | 2013-12-30 A |  | 100% |  |  | mandatory start 2013-06-17 | 2 - 821 Calendar Day | 1 | 821 |  |
| 8210IF020 |  | 827 - All cross passages for door installation, up & down track | milestone | 0d | 2014-04-28 A | 2014-04-28 A | 8210KD010 | 100% |  |  | mandatory start 2014-04-28 | 2 - 821 Calendar Day | 1 | 821 |  |
|  | 2 | **830 - Trackwork & Overhead Line System** |  |  | 2013-07-22 | 2014-04-28 |  |  |  |  |  |  |  |  |  |
| 8210IF030 |  | 830 - U/T & D/T tunnel from Northern limit to KCVA Adit (incl. KCVA Adit) | milestone | 0d | 2013-07-22 A | 2013-07-22 A | 8210KD010, 8210KD050 | 100% |  |  | mandatory start 2013-07-22 | 2 - 821 Calendar Day | 1 | 821 |  |
| 8210IF0110 |  | 830 - U/T & D/T tunnel from KCVA Adit to the S limit except U/T tunnel from N end of bifurcation chamber to 820 IF | milestone | 0d | 2013-08-19 A | 2013-08-19 A |  | 100% |  |  | mandatory start 2013-08-19 | 2 - 821 Calendar Day | 1 | 821 |  |
| 8210IF040 |  | 830 - Temporary access opening between tunnels at CH135+600 | milestone | 0d | 2013-08-19 A | 2013-08-19 A | 8210KD010, 8210KD050 | 100% |  |  | mandatory start 2013-08-19 | 2 - 821 Calendar Day | 1 | 821 |  |
| 8210IF050 |  | 830 - Kwai Chung Vent Bldg (VB6) - TSC | milestone | 0d | 2013-08-26 A | 2013-08-26 A | 8210KD010 | 100% |  |  | mandatory start 2013-08-26 | 2 - 821 Calendar Day | 1 | 821 |  |
| 8210IF060 |  | 830 - U/T tunnel from Northern end of bifurcation chamber to 820 interface | milestone | 0d | 2014-04-28 A | 2014-04-28 A | 8210KD010 | 100% | 2014-05-19 | 2014-05-19 | mandatory start 2014-03-24 | 2 - 821 Calendar Day | 1 | 821 |  |
|  | 3 | **841A - Signalling System - Trackside Equipment** |  |  | 2013-10-28 | 2014-04-28 |  |  |  |  |  |  |  |  |  |
| 8210IF070 |  | 841A - Kwai Chung Vent Bldg (VB6) - SER | milestone | 0d | 2013-10-28 A | 2013-10-28 A | 8210KD010 | 100% |  |  | mandatory start 2013-10-28 | 2 - 821 Calendar Day | 1 | 821 |  |
| 8210IF080 |  | 841A - Tunnels, both up & down tracks, from northern limit to southern limit | milestone | 0d | 2014-04-28 A | 2014-04-28 A | 8210KD010 | 100% |  |  | mandatory start 2014-04-28 | 2 - 821 Calendar Day | 1 | 821 |  |

| ID | WBS | Activity | Type | Duration | Start | Finish | Predecessors | Complete | Constraint | Calendar | Cost Centre | Contracts | Sequence |
| --- | --- | --- | --- | --- | --- | --- | --- | --- | --- | --- | --- | --- | --- |
|  | 4 | **841B - Signalling System - Train Borne Equipment (Rolling Stock + Works / Rescue Trains)** |  |  | 2013-10-28 | 2014-04-28 |  |  |  |  |  |  |  |
| 8210IF090 |  | 841B - Kwai Chung Vent Bldg (VB6) - SER | milestone | 0d | 2013-10-28 A | 2013-10-28 A | 8210KD010 | 100% | mandatory start 2013-10-28 | 2 - 821 Calendar Day | 1 | 821 |  |
| 8210IF100 |  | 841B Tunnels, both up & down tracks, from northern limit to southern limit | milestone | 0d | 2014-04-28 A | 2014-04-28 A | 8210KD010 | 100% | mandatory start 2014-04-28 | 2 - 821 Calendar Day | 1 | 821 |  |
|  | 5 | **843 - Tunnel Environmental Control System** |  |  | 2013-08-26 | 2013-08-26 |  |  |  |  |  |  |  |
| 8210IF110 |  | 843 - KC Vent Bldg (VB6) - TVF Rm, compressed & receiver air Rm & Tunnel ECS Control Rm | milestone | 0d | 2013-08-26 A | 2013-08-26 A | 8210KD010 | 100% | mandatory start 2013-08-26 | 2 - 821 Calendar Day | 1 | 821 |  |
|  | 6 | **844 - 11kV Power Distribution** |  |  | 2013-06-18 | 2014-04-28 |  |  |  |  |  |  |  |
| 8210IF145 |  | 844 - Kwai Chung Vehicular Access Adit | milestone | 0d | 2013-06-18 A | 2013-06-18 A | 8210KD010 | 100% | mandatory start 2013-04-15 | 2 - 821 Calendar Day | 1 | 821 |  |
| 8210IF530 |  | 844 - U/T & D/T tunnel from KCVA Adit to S limit except U/T tunnel from N end of bifurcation chamber to 820 interface | milestone | 0d | 2013-08-19 A | 2013-08-19 A |  | 100% | mandatory start 2013-08-19 | 2 - 821 Calendar Day | 1 | 821 | 1 |
| 8210IF120 |  | 844 - U/T & D/T tunnel from N limit to KCVA Adit (incl. KCVA Adit) | milestone | 0d | 2013-08-22 A | 2013-08-22 A | 8210KD010, 8210KD050 | 100% | mandatory start 2013-07-22 | 2 - 821 Calendar Day | 1 | 821 | 1 |
| 8210IF140 |  | 844 - Kwai Chung Vent Bldg (VB6) - Power supply electrical rooms | milestone | 0d | 2013-08-26 A | 2013-08-26 A | 8210KD010 | 100% | mandatory start 2013-08-26 | 2 - 821 Calendar Day | 1 | 821 | 2 |
| 8210IF130 |  | 844 - U/T tunnel from N end of bifurcation chamber to 820 interface | milestone | 0d | 2014-04-28 A | 2014-04-28 A | 8210KD010 | 100% | mandatory start 2014-03-24 | 2 - 821 Calendar Day | 1 | 821 | 1 |
|  | 7 | **845 - Traction Power Supply System** |  |  | 2013-08-26 | 2013-08-26 |  |  |  |  |  |  |  |
| 8210IF150 |  | 845 - Kwai Chung Vent Bldg (VB6) - Power supply electrical rooms | milestone | 0d | 2013-08-26 A | 2013-08-26 A | 8210KD010 | 100% | mandatory start 2013-08-26 | 2 - 821 Calendar Day | 1 | 821 |  |
|  | 8 | **846 - Trackside Auxiliaries** |  |  | 2013-06-24 | 2014-04-28 |  |  |  |  |  |  |  |
| 8210IF160 |  | 846 - U/T & D/T tunnel from N limit to KCVA Adit (incl. KCVA Adit) | milestone | 0d | 2013-06-24 A | 2013-06-24 A | 8210KD010 | 100% | mandatory start 2013-06-24 | 2 - 821 Calendar Day | 1 | 821 | 1 |
| 8210IF540 |  | 846 - U/T & D/T tunnel from KCVA Adit to S limit except U/T tunnel from N end of bifurcation chamber to 820 interface | milestone | 0d | 2013-07-22 A | 2013-07-22 A |  | 100% | mandatory start 2013-07-22 | 2 - 821 Calendar Day | 1 | 821 | 1 |
| 8210IF190 |  | Kwai Chung Vent Bldg (VB6) - Trackside LV Switch Rm & Boost up TX Rm | milestone | 0d | 2013-08-26 A | 2013-08-26 A | 8210KD010 | 100% | mandatory start 2013-08-26 | 2 - 821 Calendar Day | 1 | 821 |  |
| 8210IF180 |  | 846 - Kwai Chung Vehicular Access Adit rooms | milestone | 0d | 2014-04-14 A | 2014-04-14 A | 8210KD010 | 100% | mandatory start 2014-04-14 | 2 - 821 Calendar Day | 1 | 821 | 1 |
| 8210IF170 |  | 846 - U/T tunnel from N end of bifurcation chamber to 820 interface | milestone | 0d | 2014-04-28 A | 2014-04-28 A | 8210KD010 | 100% | mandatory start 2014-02-24 | 2 - 821 Calendar Day | 1 | 821 | 1 |
|  | 9 | **849 - Radio Communications System** |  |  | 2013-10-28 | 2014-04-28 |  |  |  |  |  |  |  |
| 8210IF210 |  | 849 - Kwai Chung Vent bldg (VB6) - TER, SER, CTER & corridors & roof | milestone | 0d | 2013-10-28 A | 2013-10-28 A | 8210KD010 | 100% | mandatory start 2013-10-28 | 2 - 821 Calendar Day | 1 | 821 |  |
| 8210IF212 |  | 849 - Tunnels, both up & down tracks, from northern limit to southern limit | milestone | 0d | 2014-04-28 A | 2014-04-28 A | 8210KD010 | 100% | mandatory start 2014-04-28 | 2 - 821 Calendar Day | 1 | 821 |  |
| 8210IF214 |  | 849 - Kwai Chung Vehicular Access Adit | milestone | 0d | 2014-04-28 A | 2014-04-28 A | 8210KD010 | 100% | mandatory start 2014-04-28 | 2 - 821 Calendar Day | 1 | 821 |  |
|  | 10 | **850 - Passenger Mobile Communication System** |  |  | 2013-10-28 | 2014-04-28 |  |  |  |  |  |  |  |
| 8210IF220 |  | 850 - Kwai Chung Vent Bldg (VB6) - TER & CTER | milestone | 0d | 2013-10-28 A | 2013-10-28 A | 8210KD010 | 100% | mandatory start 2013-10-28 | 2 - 821 Calendar Day | 1 | 821 |  |
| 8210IF230 |  | 850 - Tunnels, both up & down tracks, from northern limit to southern limit | milestone | 0d | 2014-04-28 A | 2014-04-28 A | 8210KD010 | 100% | mandatory start 2014-04-28 | 2 - 821 Calendar Day | 1 | 821 |  |

| ID | WBS | Activity | Type | Duration | Start | Finish | Predecessors | Complete | Constraint | Calendar | Cost Centre | Contracts | Sequence |
| --- | --- | --- | --- | --- | --- | --- | --- | --- | --- | --- | --- | --- | --- |
|  | 11 | **851 - Fixed Communication System** |  |  | 2013-10-28 | 2014-04-28 |  |  |  |  |  |  |  |
| 8210IF240 |  | 851 - Kwai Chung Vent Bldg (VB6) - TER & CTER | milestone | 0d | 2013-10-28 A | 2013-10-28 A | 8210KD010 | 100% | mandatory start 2013-10-28 | 2 - 821 Calendar Day | 1 | 821 |  |
| 8210IF250 |  | 851 - Tunnels, both up & down tracks, from northern limit to southern limit | milestone | 0d | 2014-04-28 A | 2014-04-28 A | 8210KD010 | 100% | mandatory start 2014-04-28 | 2 - 821 Calendar Day | 1 | 821 |  |
|  | 12 | **853 - Main Control System** |  |  | 2013-10-28 | 2014-04-28 |  |  |  |  |  |  |  |
| 8210IF260 |  | 853 - Kwai Chung Vent Bldg - TER & CTER | milestone | 0d | 2013-10-28 A | 2013-10-28 A | 8210KD010 | 100% | mandatory start 2013-10-28 | 2 - 821 Calendar Day | 1 | 821 |  |
| 8210IF270 |  | 853 - Kwai Chung Vehicular Access Adit Rooms | milestone | 0d | 2014-04-28 A | 2014-04-28 A | 8210KD010 | 100% | mandatory start 2014-04-28 | 2 - 821 Calendar Day | 1 | 821 |  |
|  | 13 | **854 - Security Access Management System (SAMS)** |  |  | 2014-06-30 | 2014-06-30 |  |  |  |  |  |  |  |
| 8210IF280 |  | 854 - The doors with SAMS | milestone | 0d | 2014-06-30 A | 2014-06-30 A | 8210KD010 | 100% | mandatory start 2014-06-30 | 2 - 821 Calendar Day | 1 | 821 |  |
|  | 14 | **855 - Building Services for Tunnel Ventilation Buildings & Emergency Rescue Station** |  |  | 2013-04-01 | 2014-01-27 |  |  |  |  |  |  |  |
| 8210IF300 |  | 855 - Kwai Chung Vehicular Access Adit | milestone | 0d | 2013-04-01 A | 2013-04-01 A | 8210KD010 | 100% | mandatory start 2013-04-15 | 2 - 821 Calendar Day | 1 | 821 |  |
| 8210IF290 |  | 855 - Kwai Chung Vent Bldg (VB6) - All rooms & common areas | milestone | 0d | 2013-04-29 A | 2013-04-29 A | 8210KD010 | 100% | mandatory start 2013-04-29 | 2 - 821 Calendar Day | 1 | 821 | 1 |
| 8210IF310 |  | 855 - Kwai Chung Vehicular Access Adit Rooms | milestone | 0d | 2014-01-27 A | 2014-01-27 A | 8210KD010 | 100% | mandatory start 2014-01-27 | 2 - 821 Calendar Day | 1 | 821 |  |
|  | A | **Cost Centre A - Preliminaries** |  |  | 2010-07-12 | 2015-03-11 |  |  |  |  |  |  |  |
|  | 1 | **Milestones** |  |  | 2010-10-31 | 2015-03-11 |  |  |  |  |  |  |  |
|  | 1 | **Milestone No.** |  |  | 2010-10-31 | 2015-03-11 |  |  |  |  |  |  |  |
| 8210MSA01 |  | A1 (43/10, 31 Oct '10) - Approval of Programme & Plan | milestone | 0d | 2010-10-31 A | 2010-10-31 A | 821011080, 821010165, 821011800, 821011830, 821011290 FF, 821011520, 821012934, 821013060, 821011720, 821010135, 821011190, 821011760, 8210KD010 FS+105d | 100% | finish on or after 2010-10-31 | 2 - 821 Calendar Day | CCA | 821 |  |
| 8210MSA02 |  | A2 (04/11, 30 Jan '11) - Engineer's confirmation of satisfactory implementation of Specified Plans | milestone | 0d | 2011-01-30 A | 2011-01-30 A | 821013580, 821013610, 8210KD010 FS+196d | 100% | finish on or after 2011-01-30 | 2 - 821 Calendar Day | CCA | 821 |  |
| 8210MSA03 |  | A3 (30/11, 31 Jul '11) - Engineer's cfm of satisfactory implem. of specified plans and programming management system | milestone | 0d | 2011-07-31 A | 2011-07-31 A | 8210KD010 FS+378d | 100% | finish on or after 2011-07-31 | 2 - 821 Calendar Day | CCA | 821 |  |
| 8210MSA04 |  | A4 (38/11, 25 Sep '11) - Approval of detailed interface requirements specification with the designated contractors | milestone | 0d | 2011-09-25 A | 2011-09-25 A | 821014650, 8210KD010 FS+434d | 100% | finish on or after 2011-09-25 | 2 - 821 Calendar Day | CCA | 821 |  |
| 8210MSA05 |  | A5 (04/12, 29 Jan '12) - Engineer's confirm. satisfactory implement. specified plans | milestone | 0d | 2012-01-29 A | 2012-01-29 A | 8210KD010 FS+560d | 100% | finish on or after 2012-01-29 | 2 - 821 Calendar Day | CCA | 821 |  |
| 8210MSA06 |  | A6 (30/12, 29 Jul '12) - Engineer's cfm of satisfactory implem. of specified plans and programming management system | milestone | 0d | 2012-07-29 A | 2012-07-29 A | 8210KD010 FS+742d | 100% | finish on or after 2012-07-29 | 2 - 821 Calendar Day | CCA | 821 |  |
| 8210MSA07 |  | A7 (39/12, 30 Sep '12) - Approval of detailed interface req'd specification with all designated contractors | milestone | 0d | 2012-09-30 A | 2012-09-30 A | 8210KD010 FS+805d | 100% | finish on or after 2012-09-30 | 2 - 821 Calendar Day | CCA | 821 |  |
| 8210MSA08 |  | A8 (04/13, 27 Jan '13) - Eng's cfm of satisfactory implem. specified plans & complete 50% of superstructure of VB6 | milestone | 0d | 2013-03-28 A | 2013-03-28 A | 8210MSD02 FF, 8210KD010 FS+924d | 100% | finish on or after 2013-01-27 | 2 - 821 Calendar Day | CCA | 821 |  |
| 8210MSA09 |  | A9 (30/13, 28 Jul '13) - Eng's cfm of satisfactory implem. of specified plans & programming management system | milestone | 0d | 2013-07-28 A | 2013-07-28 A | 8210KD010 FS+1106d | 100% | finish on or after 2013-07-28 | 2 - 821 Calendar Day | CCA | 821 |  |
| 8210MSA10 |  | A10 (04/14, 26 Jan '14) - Eng's cfm of satisfactory implem. of specified plans | milestone | 0d | 2014-01-26 A | 2014-01-26 A | 8210KD010 FS+1288d | 100% | finish on or after 2014-01-26 | 2 - 821 Calendar Day | CCA | 821 |  |
| 8210MSA11 |  | A11 (32/14, 10 Aug '14) - Approval of draft operating & maintenance manuals & draft as-built dwgs for whole of the works | milestone | 0d | 2014-08-10 A | 2014-08-10 A | 821013250, 8210KD010 FS+1484d, 821013230, 821010840, 821013240, 821013220, 821013210, 821013260, 821013160 | 100% | mandatory finish 2014-08-10 | 2 - 821 Calendar Day | CCA | 821 |  |
| 8210MSA12 |  | A12 (06/15, 8 Feb '15) - Approval of operating & maintenance manuals & as-built dwgs for whole of the work | milestone | 0d | 2015-03-11 A | 2015-03-11 A | 821013190, 821010790, 8210KD010 FS+1666d | 100% | finish on 2015-04-10 | 2 - 821 Calendar Day | CCA | 821 |  |

| ID | WBS | Activity | Duration | Start | Finish | Predecessors | Complete | Planned start | Planned finish | Calendar | Cost Centre | Sequence | Contracts | Phase of Works |
| --- | --- | --- | --- | --- | --- | --- | --- | --- | --- | --- | --- | --- | --- | --- |
|  | 2 | **Submission** |  | 2010-07-12 | 2015-02-06 |  |  |  |  |  |  |  |  |  |
|  | 1 | **MTRC** |  | 2010-07-12 | 2015-02-06 |  |  |  |  |  |  |  |  |  |
| 821010135 |  | Prepare & Submit initial 3 months rolling programme | 15d | 2010-07-12 A | 2010-07-26 A | 8210KD000 | 100% |  |  | 2 - 821 Calendar Day | CCA | 1 | 821 | C010 |
| 821010140 |  | Submit preliminary master programmme/Time Chainage Programme | 61d | 2010-07-12 A | 2010-09-15 A | 8210KD000 | 100% | 2010-07-12 | 2010-09-10 | 2 - 821 Calendar Day | CCA | 2 | 821 | C010 |
| 821010770 |  | Submission of Quality Plan | 26d | 2010-07-12 A | 2010-08-04 A | 8210KD000 | 100% | 2010-07-12 | 2010-08-06 | 2 - 821 Calendar Day | CCA | 3 | 821 | C010 |
| 821012930 |  | Submission of sub-contract management plan P34.1 | 26d | 2010-07-12 A | 2010-09-08 A | 8210KD000 | 100% | 2010-07-12 | 2010-08-06 | 2 - 821 Calendar Day | CCA | G | 821 | C010 |
| 821010870 |  | Submission of Noise Management Plan P22.3.6 | 26d | 2010-07-19 A | 2010-08-27 A | 8210KD000 | 100% | 2010-07-19 | 2010-08-13 | 2 - 821 Calendar Day | CCA | 8 | 821 | C010 |
| 821010960 |  | Provide Bond, COC13.1 | 20d | 2010-07-19 A | 2010-08-07 A | 8210KD010 SS | 100% |  |  | 2 - 821 Calendar Day | CCA |  | 821 | C010 |
| 821010970 |  | Provide PCG, COC13.2 | 20d | 2010-07-19 A | 2010-08-07 A | 8210KD010 SS | 100% |  |  | 2 - 821 Calendar Day | CCA |  | 821 | C010 |
| 821011130 |  | Submission of Environmental Management Plan | 26d | 2010-07-19 A | 2010-08-27 A | 8210KD000 | 100% | 2010-07-19 | 2010-08-13 | 2 - 821 Calendar Day | CCA | 4 | 821 | C010 |
| 821011150 |  | Submit proposal for water pollution control measures P22.6.1 | 26d | 2010-07-19 A | 2010-08-27 A | 8210KD000 | 100% | 2010-07-19 | 2010-08-13 | 2 - 821 Calendar Day | CCA | A | 821 | C010 |
| 821011380 |  | Submit Contractor organization Chart, G.11.1.1 | 30d | 2010-07-19 A | 2010-08-17 A | 8210KD010 | 100% |  |  | 2 - 821 Calendar Day | CCA |  | 821 | C010 |
| 821011560 |  | Submit proposal for Air quality monitoring plan P22.4.3 | 26d | 2010-07-19 A | 2010-08-27 A | 8210KD000 | 100% | 2010-07-19 | 2010-08-13 | 2 - 821 Calendar Day | CCA | C | 821 | C010 |
| 821013589 |  | Submit Health and Safety Plan, G3.6.1 | 28d | 2010-07-29 A | 2010-08-26 A | 8210KD010 FS+60d | 100% | 2010-07-29 | 2010-08-25 | 2 - 821 Calendar Day | CCA | F | 821 | C010 |
| 821012240 |  | Submit Design for Safety and Constructability Plan, App Q | 26d | 2010-08-02 A | 2010-08-18 A | 8210KD000 FS+46d | 100% | 2010-08-02 | 2010-08-27 | 2 - 821 Calendar Day | CCA | E | 821 | C010 |
| 821010780 |  | Comment Quality Plan | 28d | 2010-08-04 A | 2010-08-19 A | 821010770 | 100% | 2010-08-04 | 2010-08-31 | 2 - 821 Calendar Day | CCA | 3 | 821 | C010 |
| 821011070 |  | Submission of Contractor Submission Schedule | 26d | 2010-08-11 A | 2010-09-08 A | 8210KD000 FS+30d | 100% | 2010-08-11 | 2010-09-05 | 2 - 821 Calendar Day | CCA | 5 | 821 | C010 |
| 821012800 |  | Comment Design for Safety and Constructability Plan | 28d | 2010-08-18 A | 2010-09-14 A | 821012240 | 100% |  |  | 2 - 821 Calendar Day | CCA | E | 821 | C010 |
| 821010900 |  | Resubmit Quality Plan | 28d | 2010-08-19 A | 2010-09-01 A | 821010780 | 100% | 2010-08-19 | 2010-09-15 | 2 - 821 Calendar Day | CCA | 3 | 821 | C010 |
| 821013590 |  | Comment Health and Safety Plan | 28d | 2010-08-26 A | 2010-09-13 A | 821013589 | 100% | 2010-08-26 | 2010-09-22 | 2 - 821 Calendar Day | CCA | F | 821 | C010 |
| 821011140 |  | Comment Environmental Management Plan | 28d | 2010-08-27 A | 2010-09-07 A | 821011130 | 100% | 2010-08-27 | 2010-09-23 | 2 - 821 Calendar Day | CCA | 4 | 821 | C010 |
| 821011680 |  | Comment Noise Management Plan | 28d | 2010-08-27 A | 2010-09-07 A | 821010870 | 100% | 2010-08-27 | 2010-09-23 | 2 - 821 Calendar Day | CCA | 8 | 821 | C010 |
| 821011780 |  | Comment water pollution control measure | 28d | 2010-08-27 A | 2010-09-07 A | 821011150 | 100% | 2010-08-27 | 2010-09-23 | 2 - 821 Calendar Day | CCA | A | 821 | C010 |
| 821011810 |  | Comment Air quality monitoring plan | 28d | 2010-08-27 A | 2010-09-07 A | 821011150 | 100% | 2010-08-27 | 2010-09-23 | 2 - 821 Calendar Day | CCA | C | 821 | C010 |
| 821012160 |  | Submit schedule of Design, App Z1.3/2.5 | 28d | 2010-08-27 A | 2010-09-09 A | 8210KD000 FS+46d | 100% | 2010-08-27 | 2010-09-23 | 2 - 821 Calendar Day | CCA | B | 821 | C010 |
| 821012170 |  | Submit Preliminary Design Programme, App Z2.1 | 28d | 2010-08-27 A | 2010-09-16 A | 8210KD000 FS+46d | 100% | 2010-08-27 | 2010-09-23 | 2 - 821 Calendar Day | CCA | D | 821 | C010 |
| 821010880 |  | Prepare & Submit Vibration Monitoring Plan P22.9 | 24d | 2010-08-30 A | 2010-12-14 A | 8210KD010 FS+48d | 100% | 2010-08-30 | 2010-09-22 | 2 - 821 Calendar Day | CCA |  | 821 | C010 |
| 821011080 |  | Approve Quality Plan | 28d | 2010-09-01 A | 2010-09-13 A | 821010900 | 100% | 2010-09-01 | 2010-09-28 | 2 - 821 Calendar Day | CCA | 3 | 821 | C010 |
| 821010910 |  | Submission of Waste Management Plan | 26d | 2010-09-04 A | 2010-09-29 A | 8210KD000 | 100% |  |  | 2 - 821 Calendar Day | CCA | 9 | 821 | C010 |
| 821011160 |  | Resubmit Environmental Management Plan | 28d | 2010-09-07 A | 2010-10-26 A | 821011140 | 100% | 2010-09-07 | 2010-10-04 | 2 - 821 Calendar Day | CCA | 4 | 821 | C010 |
| 821011710 |  | Resubmit Noise Management Plan | 28d | 2010-09-07 A | 2010-10-26 A | 821011680 | 100% | 2010-09-07 | 2010-10-04 | 2 - 821 Calendar Day | CCA | 8 | 821 | C010 |
| 821011790 |  | Resubmit water pollution control measure | 28d | 2010-09-07 A | 2010-10-26 A | 821011780 | 100% | 2010-09-07 | 2010-10-04 | 2 - 821 Calendar Day | CCA | A | 821 | C010 |
| 821011820 |  | Resubmit Air quality monitoring plan | 28d | 2010-09-07 A | 2010-10-26 A | 821011810 | 100% | 2010-09-07 | 2010-10-04 | 2 - 821 Calendar Day | CCA | C | 821 | C010 |
| 821011290 |  | Approval of Contractor Submission Schedule | 28d | 2010-09-08 A | 2010-09-21 A | 821011070 | 100% | 2010-09-08 | 2010-10-05 | 2 - 821 Calendar Day | CCA | 5 | 821 | C010 |
| 821012932 |  | Review sub-contract management plan | 14d | 2010-09-08 A | 2010-09-17 A | 821012930 | 100% | 2010-09-08 | 2010-09-21 | 2 - 821 Calendar Day | CCA | G | 821 | C010 |
| 821012161 |  | Comment Schedule of Design | 28d | 2010-09-09 A | 2010-09-17 A | 821012160 | 100% | 2010-09-09 | 2010-10-06 | 2 - 821 Calendar Day | CCA | B | 821 | C010 |
| 821013600 |  | Resubmit Health and Safety Plan | 28d | 2010-09-13 A | 2010-09-28 A | 821013590 | 100% | 2010-09-13 | 2010-10-10 | 2 - 821 Calendar Day | CCA | F | 821 | C010 |
| 821013570 |  | Resubmit Design for Safety and Constructability Plan | 28d | 2010-09-14 A | 2010-10-11 A | 821012800 | 100% |  |  | 2 - 821 Calendar Day | CCA | E | 821 | C010 |
| 821010145 |  | Comment Preliminary Master/Time Chainage Programme | 28d | 2010-09-15 A | 2010-09-24 A | 821010140 | 100% | 2010-09-15 | 2010-10-12 | 2 - 821 Calendar Day | CCA | 2 | 821 | C010 |
| 821012171 |  | Comment Preliminary Design Programme | 28d | 2010-09-16 A | 2010-10-21 A | 821012170 | 100% | 2010-09-16 | 2010-10-13 | 2 - 821 Calendar Day | CCA | D | 821 | C010 |
| 821012162 |  | Resubmit Schedule of Design | 28d | 2010-09-17 A | 2010-11-12 A | 821012161 | 100% | 2010-09-17 | 2010-10-14 | 2 - 821 Calendar Day | CCA | B | 821 | C010 |
| 821012934 |  | Resubmit sub-contract management plan | 14d | 2010-09-17 A | 2010-11-05 A | 821012932 | 100% | 2010-09-17 | 2010-09-30 | 2 - 821 Calendar Day | CCA | G | 821 | C010 |
| 821011170 |  | Submission of System Assurance Plan | 26d | 2010-09-20 A | 2010-10-02 A | 8210KD000 FS+56d | 100% | 2010-09-20 | 2010-10-15 | 2 - 821 Calendar Day | CCA | 6 | 821 | C010 |
| 821010155 |  | Resubmit Preliminary Master/Time Chainage Programme | 9d | 2010-09-24 A | 2010-10-19 A | 821010145 | 100% | 2010-09-24 | 2010-10-02 | 2 - 821 Calendar Day | CCA | 2 | 821 | C010 |
| 821013610 |  | Approve Health and Safety Plan | 28d | 2010-09-28 A | 2010-10-06 A | 821013600 | 100% | 2010-09-28 | 2010-10-25 | 2 - 821 Calendar Day | CCA | F | 821 | C010 |
| 821011730 |  | Comment Waste Management Plan | 28d | 2010-09-29 A | 2010-10-07 A | 821010910 | 100% | 2010-09-29 | 2010-10-26 | 2 - 821 Calendar Day | CCA | 9 | 821 | C010 |
| 821011520 |  | Comment system Assurance Plan | 28d | 2010-10-02 A | 2010-10-14 A | 821011170 | 100% | 2010-10-02 | 2010-10-29 | 2 - 821 Calendar Day | CCA | 6 | 821 | C010 |
| 821011750 |  | Resubmit Waste Management Plan | 28d | 2010-10-07 A | 2010-11-29 A | 821011730 | 100% | 2010-10-07 | 2010-11-03 | 2 - 821 Calendar Day | CCA | 9 | 821 | C010 |
| 821013580 |  | Approve Design for Safety and Constructability Plan | 28d | 2010-10-11 A | 2010-10-28 A | 821013570 | 100% | 2010-08-18 | 2010-09-14 | 2 - 821 Calendar Day | CCA | E | 821 | C010 |
| 821010165 |  | Approved Master/ Time Chainage Programme | 14d | 2010-10-19 A | 2010-11-30 A | 821010155 | 100% | 2010-10-19 | 2010-11-01 | 2 - 821 Calendar Day | CCA | 2 | 821 | C010 |
| 821012172 |  | Resubmit Preliminary Design Programme | 28d | 2010-10-21 A | 2010-11-12 A | 821012171 | 100% | 2010-10-21 | 2010-11-17 | 2 - 821 Calendar Day | CCA | D | 821 | C010 |
| 821011190 |  | Approve Environmental Management Plan | 28d | 2010-10-26 A | 2010-12-02 A | 821011160 | 100% | 2010-10-26 | 2010-11-22 | 2 - 821 Calendar Day | CCA | 4 | 821 | C010 |
| 821011720 |  | Approve Noise Management Plan | 28d | 2010-10-26 A | 2010-12-02 A | 821011710 | 100% | 2010-10-26 | 2010-11-22 | 2 - 821 Calendar Day | CCA | 8 | 821 | C010 |
| 821011800 |  | Approve water pollution control measure | 28d | 2010-10-26 A | 2010-12-02 A | 821011790 | 100% | 2010-10-26 | 2010-11-22 | 2 - 821 Calendar Day | CCA | A | 821 | C010 |
| 821011830 |  | Approve Air quality monitoring plan | 28d | 2010-10-26 A | 2010-12-02 A | 821011820 | 100% | 2010-10-26 | 2010-11-22 | 2 - 821 Calendar Day | CCA | C | 821 | C010 |
| 821012163 |  | Approve Schedule of Design | 28d | 2010-11-12 A | 2010-11-22 A | 821012162 | 100% | 2010-11-12 | 2010-12-09 | 2 - 821 Calendar Day | CCA | B | 821 | C010 |
| 821012173 |  | Approve Preliminary Design Programme | 28d | 2010-11-12 A | 2010-11-22 A | 821012172 | 100% | 2010-11-12 | 2010-12-09 | 2 - 821 Calendar Day | CCA | D | 821 | C010 |
| 821011760 |  | Approve Waste Management Plan | 28d | 2010-11-29 A | 2010-12-03 A | 821011750 | 100% | 2010-09-29 | 2010-10-26 | 2 - 821 Calendar Day | CCA | 9 | 821 | C010 |
| 821010990 |  | Submit Schedule of Utilities Diversion, G.7.51 | 24d | 2010-12-23 A | 2011-01-17 A | 8210KD010 FS+52d | 100% | 2010-12-23 | 2011-01-15 | 2 - 821 Calendar Day | CCA |  | 821 | C010 |
| 821016020 |  | Submit Method of Construction, G12.1.1 | 6d | 2010-12-23 A | 2010-12-28 A | 8210KD010 FS+112d | 100% |  |  | 2 - 821 Calendar Day | CCA |  | 821 | C010 |
| 821010840 |  | Submit draft O&M Manuals | 30d | 2014-06-02 A | 2014-08-06 A | 8210KD120 | 100% | 2014-06-02 | 2014-07-01 | 2 - 821 Calendar Day | CCA |  | 821 | C010 |
| 821013160 |  | Submit draft as-built drawings | 30d | 2014-06-02 A | 2014-08-06 A | 8210KD100 | 100% | 2014-06-02 | 2014-07-01 | 2 - 821 Calendar Day | CCA |  | 821 | C010 |
| 821010790 |  | Submit as-built drawings | 30d | 2014-11-01 A | 2015-02-06 A | 8210KD120 | 100% | 2014-11-01 | 2014-11-30 | 2 - 821 Calendar Day | CCA |  | 821 | C010 |
| 821013190 |  | Submit O&M Manuals | 30d | 2014-11-01 A | 2015-02-06 A |  | 100% | 2014-11-01 | 2014-11-30 | 2 - 821 Calendar Day | CCA |  | 821 | C010 |

Notes:
- 821010140: Constraints and Assumptions: G4.6.1 submitted for approval within 60 Days of the date / of the letter of acceptance
- 821010770: Constraints and Assumptions: G9.2.1 submitted for approval within 4weeks of the / date of the letter of acceptance
- 821010870: Constraints and Assumptions: At least 45d prior to commencement of the relevant / works
- 821011130: Constraints and Assumptions: G9.2.1 submitted for approval within 4weeks of the / date of the letter of acceptance
- 821011380: Constraints and Assumptions: Submit for approval before commencement of / work
- 821011070: Constraints and Assumptions: G12.11.1 submitted for approval within 4 / weeks of the date of the letter of acceptance
- 821010910: Constraints and Assumptions: Submit for approval before commencement of / work
- 821011170: Constraints and Assumptions: Submit the System Assurance Plan for approval within 28Days

| ID | WBS | Activity | Duration | Start | Finish | Predecessors | Complete | Planned start | Planned finish | Constraint | Calendar | Cost Centre | Sequence | Contracts | Phase of Works | Person in Charge |
| --- | --- | --- | --- | --- | --- | --- | --- | --- | --- | --- | --- | --- | --- | --- | --- | --- |
|  | 3 | **EPD** |  | 2010-08-31 | 2011-06-09 |  |  |  |  |  |  |  |  |  |  |  |
| 821010830 |  | Submission of soil disposal plan | 30d | 2010-08-31 A | 2010-09-28 A | 8210KD010 | 100% | 2010-08-31 | 2010-09-29 |  | 2 - 821 Calendar Day | CCA | 1 | 821 | C010 |  |
| 821010820 |  | Application of CNP and approval from EPD (16hrs) | 26d | 2010-09-30 A | 2010-10-15 A | 821012630 SF, 8210KD010 | 100% | 2010-09-30 | 2010-11-01 |  |  | CCA | 2 | 821 | C010 |  |
| 821011195 |  | Prepare variation environmental permit (VEP) | 33d | 2010-11-08 A | 2010-11-19 A | 8210KD010 FS+112d | 100% | 2010-11-08 | 2010-12-15 |  |  | CCA | 3 | 821 | C010 |  |
| 821011205 |  | MTRC comment VEP | 14d | 2010-11-19 A | 2010-11-29 A | 821011195 | 100% | 2010-11-19 | 2010-12-02 |  | 2 - 821 Calendar Day | CCA | 3 | 821 | C010 |  |
| 821011215 |  | Resubmit VEP to MTRC | 6d | 2010-11-29 A | 2010-11-29 A | 821011205 | 100% | 2010-11-29 | 2010-12-04 |  |  | CCA | 3 | 821 | C010 |  |
| 821011225 |  | MTRC approve VEP and EPD initial review | 14d | 2010-11-30 A | 2010-12-13 A | 821011215 | 100% |  |  |  | 2 - 821 Calendar Day | CCA | 3 | 821 | C010 |  |
| 821011235 |  | EPD comment VEP | 14d | 2010-12-14 A | 2011-05-02 A | 821011225 | 100% | 2010-12-14 | 2010-12-27 |  | 2 - 821 Calendar Day | CCA | 3 | 821 | C010 |  |
| 821010825 |  | Application of CNP and approval from EPD (24hrs) | 30d | 2010-12-23 A | 2010-12-31 A | 821010820 | 100% | 2010-12-23 | 2011-01-29 |  |  | CCA | 2 | 821 | C010 |  |
| 821011245 |  | Resubmit VEP to EPD | 6d | 2011-05-02 A | 2011-05-05 A | 821011235 | 100% | 2011-07-04 | 2011-07-09 | start on or after 2011-07-04 |  | CCA | 3 | 821 | C010 |  |
| 821011255 |  | EPD approve VEP | 12d | 2011-05-05 A | 2011-05-13 A | 821011245 | 100% | 2011-05-05 | 2011-05-16 |  | 2 - 821 Calendar Day | CCA | 3 | 821 | C010 |  |
| 821011265 |  | Grant VEP under EIAO | 28d | 2011-05-13 A | 2011-06-09 A | 821011255 | 100% |  |  |  | 2 - 821 Calendar Day | CCA | 3 | 821 | C010 |  |
|  | 5 | **SLG** |  | 2012-10-15 | 2014-09-30 |  |  |  |  |  |  |  |  |  |  |  |
| 821011040 |  | Prepare dwg & document to apply for & obtain excavation permits | 45d | 2012-10-15 A | 2012-11-27 A | 8210KD010 FS+818d | 100% | 2012-10-15 | 2012-11-28 |  | 2 - 821 Calendar Day | CCA |  | 821 | C010 |  |
| 821011030 |  | Submit TTMS schemes for Engineer review & submit for SLG approval | 30d | 2012-11-28 A | 2013-08-05 A | 821011040 | 100% | 2012-11-28 | 2012-12-27 |  | 2 - 821 Calendar Day | CCA |  | 821 | C010 |  |
| 821010810 |  | Obtain approval and permits fr all rel. Authorities (sub. subject to SLG) | 84d | 2013-08-06 A | 2014-02-06 A | 821011030 | 100% | 2013-08-06 | 2013-10-28 |  | 2 - 821 Calendar Day | CCA |  | 821 | C010 |  |
| 821011050 |  | Approval of TTMS | 21d | 2014-02-07 A | 2014-02-28 A | 821010810 | 100% | 2014-02-07 | 2014-02-27 |  | 2 - 821 Calendar Day | CCA |  | 821 | C010 |  |
| 821011060 |  | Notification period to the commencement of the road closure | 28d | 2014-04-01 A | 2014-09-30 A | 821011050 | 100% | 2014-04-01 | 2014-04-28 |  | 2 - 821 Calendar Day | CCA |  | 821 | C010 |  |
|  | 6 | **DSD** |  | 2010-07-19 | 2010-10-05 |  |  |  |  |  |  |  |  |  |  |  |
| 821014230 |  | Prepare & submit DIA (Drainage Impact Assessment) | 66d | 2010-07-19 A | 2010-10-05 A | 8210KD010 | 100% |  |  |  |  | CCA |  | 821 | C010 | ARUP |
|  | 2 | **RDO/GEO** |  | 2010-10-18 | 2012-09-21 |  |  |  |  |  |  |  |  |  |  |  |
| 821011640 |  | Prepare slop/Geotechnical features inspection/assessment | 24d | 2010-10-18 A | 2010-11-13 A | 8210KD010 FS+48d | 100% |  |  |  |  | CCA | 3 | 821 | C010 | ARUP |
| 821011000 |  | Prepare & Submit Condition Survey for WSD | 24d | 2010-11-23 A | 2011-01-06 A | 8210KD010 FS+24d | 100% | 2010-11-23 | 2010-12-20 |  |  | CCA |  | 821 | C010 | ARUP |
| 821011010 |  | Prepare & Submit Condition Survey for CLP (incl. in CBAR III) | 24d | 2011-05-25 A | 2011-12-20 A | 8210KD010 FS+310d | 100% | 2011-05-25 | 2011-06-22 |  |  | CCA |  | 821 | C010 | ARUP |
| 821011700 |  | RDO consultation & MTRC approve | 24d | 2011-05-31 A | 2012-09-21 A | 8210KD010, 821011640 | 100% | 2011-05-31 | 2011-06-28 |  |  | CCA | 3 | 821 | C010 | ARUP |
| 821011020 |  | Prepare & Submit Condition Survey for LCK Hospital | 24d | 2012-03-26 A | 2012-07-13 A | 8210KD010 FS+310d | 100% | 2012-03-26 | 2012-04-26 |  |  | CCA |  | 821 | C010 | ARUP |

Notes:
- 821010830: Constraints and Assumptions: At least 14days prior to off-site disposal of surplus / excavated material

| ID | WBS | Activity | Duration | Start | Finish | Predecessors | Complete | Planned start | Planned finish | Calendar | Resources | Cost Centre | Sequence | Contracts | Phase of Works | Location | Person in Charge |
| --- | --- | --- | --- | --- | --- | --- | --- | --- | --- | --- | --- | --- | --- | --- | --- | --- | --- |
|  | 4 | **Land Contamination for Site H, T and J** |  | 2010-08-24 | 2010-11-18 |  |  |  |  |  |  |  |  |  |  |  |  |
| 821013040 |  | Submission of CAR & RAP | 28d | 2010-08-24 A | 2010-09-08 A | 821011590 FS-52d, 821014750 | 100% | 2010-08-24 | 2010-09-20 | 2 - 821 Calendar Day |  | CCA | 1 | 821 | C010 |  |  |
| 821013050 |  | Approval of CAR & RAP | 14d | 2010-09-08 A | 2010-10-04 A | 821013040 | 100% | 2010-09-06 | 2010-09-19 | 2 - 821 Calendar Day |  | CCA | 1 | 821 | C010 |  |  |
| 821013060 |  | Carry out remediation work | 21d | 2010-10-28 A | 2010-11-04 A | 821013050 | 100% | 2010-10-05 | 2010-10-25 | 2 - 821 Calendar Day | Other Skill Labour (Civil) [336 h] | CCA | 1 | 821 | C010 |  |  |
| 821013030 |  | Submission of RR to the Engineer/EPD for completion of work | 14d | 2010-11-12 A | 2010-11-18 A | 8210KD010, 821013060 | 100% | 2010-11-12 | 2010-11-25 | 2 - 821 Calendar Day |  | CCA | 1 | 821 | C010 |  |  |
|  | 7 | **Completion** |  |  |  |  |  |  |  |  |  |  |  |  |  |  |  |
|  | 5 | **Design Submission** |  | 2011-03-12 | 2013-02-07 |  |  |  |  |  |  |  |  |  |  |  |  |
|  | 7 | **Interface Design - 821 / 820** |  | 2011-03-12 | 2012-09-28 |  |  |  |  |  |  |  |  |  |  |  |  |
| 821013830 |  | Submit Design Report to MTRC | 38d | 2011-03-12 A | 2011-04-21 A | 8210KD010 FS+236d | 100% | 2011-03-12 | 2011-04-29 |  |  | CCA | 2 | 821 | C010 | 2120 | ARUP |
| 821014630 |  | MTRC review | 24d | 2011-04-21 A | 2011-05-20 A | 821013830 | 100% | 2011-04-21 | 2011-05-24 |  |  | CCA | 2 | 821 | C010 | 2120 | ARUP |
| 821014640 |  | Resubmit Design report | 18d | 2011-05-20 A | 2011-07-26 A | 821014630 | 100% | 2011-05-25 | 2011-06-15 |  |  | CCA | 2 | 821 | C010 | 2120 | ARUP |
| 821014650 |  | MTRC Approve | 24d | 2011-07-26 A | 2012-09-28 A | 821014640 | 100% | 2011-07-26 | 2011-08-22 |  |  | CCA | 2 | 821 | C010 | 2120 | ARUP |
|  | 8 | **Interface Design - 821 / 822** |  | 2012-07-23 | 2013-02-07 |  |  |  |  |  |  |  |  |  |  |  |  |
| 821014670 |  | Submit Design Report to MTRC | 38d | 2012-07-23 A | 2012-11-22 A | 8210KD010 FS+592d | 100% | 2012-07-23 | 2012-09-04 |  |  | CCA | 2 | 821 | C010 | 2120 | ARUP |
| 821014680 |  | MTRC review | 24d | 2012-11-23 A | 2012-12-10 A | 821014670 | 100% | 2012-11-23 | 2012-12-20 |  |  | CCA | 2 | 821 | C010 | 2120 | ARUP |
| 821014690 |  | Resubmit Design report | 18d | 2012-12-11 A | 2013-01-10 A | 821014680 | 100% | 2012-12-11 | 2013-01-03 |  |  | CCA | 2 | 821 | C010 | 2120 | ARUP |
| 821014700 |  | MTRC Approve | 24d | 2013-01-11 A | 2013-02-07 A | 821014690 | 100% |  |  |  |  | CCA | 2 | 821 | C010 | 2120 | ARUP |
|  | 3 | **Procurement** |  | 2010-07-19 | 2010-11-18 |  |  |  |  |  |  |  |  |  |  |  |  |
|  | 1 | **General** |  | 2010-07-19 | 2010-11-18 |  |  |  |  |  |  |  |  |  |  |  |  |
| 821010180 |  | Provide Vehicles (P42.1) | 8d | 2010-07-19 A | 2010-07-26 A | 8210KD010 | 100% |  |  | 2 - 821 Calendar Day |  | CCA | 1 | 821 | C030 |  |  |
| 821010580 |  | Provide 8 Nos. Survey Assistant (P41.3.1) | 30d | 2010-07-19 A | 2010-08-17 A | 8210KD010 | 100% |  |  | 2 - 821 Calendar Day |  | CCA | 1 | 821 | C030 |  |  |
| 821010590 |  | Provide Survey Equipment (P41.1) | 30d | 2010-07-19 A | 2010-08-17 A | 8210KD010 | 100% |  |  | 2 - 821 Calendar Day |  | CCA | 1 | 821 | C030 |  |  |
| 821010660 |  | Application for temporary water and power supply | 89d | 2010-07-19 A | 2010-09-15 A | 8210KD010 | 100% | 2010-07-19 | 2010-10-15 | 2 - 821 Calendar Day |  | CCA | 2 | 821 | C030 |  |  |
| 821011550 |  | Appoint principal designer | 12d | 2010-07-19 A | 2010-07-26 A | 8210KD000 FS+1d | 100% | 2010-07-19 | 2010-07-31 |  |  | CCA |  | 821 | C030 |  |  |
| 821014770 |  | Appoint tree survey consultant | 12d | 2010-07-28 A | 2010-08-10 A | 8210KD010 FS+9d | 100% |  |  |  |  | CCA |  | 821 | C030 |  |  |
| 821014780 |  | Existing ground water devices monitoring | 12d | 2010-08-12 A | 2010-08-25 A | 8210KD010 FS+24d | 100% |  |  |  |  | CCA |  | 821 | C030 |  |  |
| 821014750 |  | Appoint consultant for contamination assessment | 12d | 2010-08-13 A | 2010-08-27 A | 8210KD010 FS+22d | 100% | 2010-08-13 | 2010-08-26 |  |  | CCA |  | 821 | C030 |  |  |
| 821014740 |  | Tunnel equipment | 78d | 2010-08-16 A | 2010-11-18 A | 8210KD010 FS+27d | 100% | 2010-08-16 | 2010-11-17 |  |  | CCA |  | 821 | C030 |  |  |
| 821013820 |  | Appoint ICE | 6d | 2010-08-26 A | 2010-09-29 A | 8210KD010 FS+29d | 100% | 2010-08-26 | 2010-09-01 |  |  | CCA |  | 821 | C030 |  |  |
| 821010930 |  | Site office erection | 6d | 2010-09-06 A | 2010-09-28 A | 8210KD010 FS+49d | 100% | 2010-09-06 | 2010-09-11 |  |  | CCA |  | 821 | C030 |  |  |
| 821010800 |  | Concrete supply | 6d | 2010-09-17 A | 2010-09-30 A | 8210KD010 FS+57d | 100% | 2010-09-17 | 2010-09-24 |  |  | CCA |  | 821 | C030 |  |  |
| 821014720 |  | Spoil disposal | 6d | 2010-09-27 A | 2010-10-06 A | 8210KD010 FS+72d | 100% | 2010-09-27 | 2010-10-04 |  |  | CCA |  | 821 | C030 |  |  |
| 821010920 |  | Rebar Supply | 6d | 2010-10-14 A | 2010-10-21 A | 8210KD010 FS+57d | 100% |  |  |  |  | CCA |  | 821 | C030 |  |  |

| ID | WBS | Activity | Type | Duration | Start | Finish | Predecessors | Complete | Planned start | Planned finish | Constraint | Calendar | Resources | Cost Centre | Contracts | Location | Phase of Works | Sequence | Person in Charge |
| --- | --- | --- | --- | --- | --- | --- | --- | --- | --- | --- | --- | --- | --- | --- | --- | --- | --- | --- | --- |
|  | 11 | **Barging Point** |  |  | 2010-11-06 | 2015-03-09 |  |  |  |  |  |  |  |  |  |  |  |  |  |
| 821011500 |  | Carry out hydrographic & condition survey |  | 16d | 2010-11-06 A | 2010-11-24 A | 8210AC010 FS+96d | 100% |  |  |  | 3 - 821 VB & External (6 Work day &10d incl. weath. May-Oct) | Contractor Surveyor / Land Surveyor [256 h] | CCA | 821 | 3110 | C020 |  |  |
| 821011650 |  | Final hydrographic survey |  | 7d | 2015-03-02 A | 2015-03-09 A | 821011500, 8210KD040, 8210KD080 | 100% |  |  |  | 3 - 821 VB & External (6 Work day &10d incl. weath. May-Oct) |  | CCA | 821 | 3110 | C020 |  |  |
|  | 4 | **Preliminaries** |  |  | 2010-07-19 | 2010-11-08 |  |  |  |  |  |  |  |  |  |  |  |  |  |
| 821012250 |  | Submit site office and engineer's site accommodation design to MTRC for approval |  | 42d | 2010-07-19 A | 2010-09-16 A | 8210KD000 FS+2d | 100% | 2010-07-19 | 2010-09-04 |  |  |  | CCA | 821 |  | C010 |  |  |
| 821012640 |  | Approve office design |  | 28d | 2010-09-16 A | 2010-09-27 A | 821012250 | 100% | 2010-09-16 | 2010-10-13 |  | 2 - 821 Calendar Day |  | CCA | 821 |  | C010 |  |  |
| 821012760 |  | Erect structure and cladding |  | 30d | 2010-09-27 A | 2010-10-16 A | 821010800, 821010930, 821012440, 821012640, 821010860, 821010660 FF, 821010920 | 100% | 2010-09-27 | 2010-11-03 |  | 3 - 821 VB & External (6 Work day &10d incl. weath. May-Oct) | Crane Lorry [240 h]; Contractor Surveyor / Land Surveyor [480 h]; Concrete [90 m3]; Rebar [20 T]; Backhoe [720 h] | CCA | 821 |  | C080 |  |  |
| 821012770 |  | Interior fitting out and building services |  | 18d | 2010-10-16 A | 2010-11-08 A | 821012760 | 100% | 2010-10-18 | 2010-11-06 |  | 3 - 821 VB & External (6 Work day &10d incl. weath. May-Oct) | Other Skill Labour (BS / E&M) [576 h]; Electrician [288 h]; Other Skill Labour (Civil) [576 h] | CCA | 821 |  | C100 |  |  |
|  | C | **Cost Centre C - Adit Connection to Kwai Chung Vent. Bldg** |  |  | 2010-07-12 | 2015-03-28 |  |  |  |  |  |  |  |  |  |  |  |  |  |
|  | 1 | **Milestones** |  |  | 2010-12-26 | 2014-10-26 |  |  |  |  |  |  |  |  |  |  |  |  |  |
|  | 1 | **Milestone No.** |  |  | 2010-12-26 | 2014-10-26 |  |  |  |  |  |  |  |  |  |  |  |  |  |
| 8210MSC01 |  | C1 (51/10, 26 Dec '10) - Complete 40% portal formation for KCVA Adit | milestone | 0d | 2010-12-26 A | 2010-12-26 A | 8210KD010 FS+161d | 100% |  |  | finish on or after 2010-12-26 | 2 - 821 Calendar Day |  | CCC | 821 | 2120 | C090 |  |  |
| 8210MSC02 |  | C2 (12/11, 27 Mar '11) - Complete 20% of excavation & temp support for KCVA Adit | milestone | 0d | 2011-04-30 A | 2011-04-30 A | 821012740 FS-16d, 8210KD010 FS+252d | 100% |  |  | finish on or after 2011-03-27 | 2 - 821 Calendar Day |  | CCC | 821 | 2120 | C090 |  |  |
| 8210MSC03 |  | C3 (30/11, 31 Jul '11) - Complete 95% of excavation & temp support for KCVA Adit | milestone | 0d | 2011-09-25 A | 2011-09-25 A | 821016064, 8210KD010 FS+378d | 100% |  |  | finish on or before 2011-07-31 | 2 - 821 Calendar Day |  | CCC | 821 | 2120 | C090 |  |  |
| 8210MSC04 |  | C4 (34/12, 26 Aug '12) - Complete 30% of adit lining for the KCVA Adit | milestone | 0d | 2012-06-30 A | 2012-06-30 A | 821012015, 8210KD010 FS+770d | 100% |  |  | finish on or after 2012-08-26 | 2 - 821 Calendar Day |  | CCC | 821 | 2120 | C090 |  |  |
| 8210MSC05 |  | C5 (47/12, 25 Nov '12) - Complete 100% of adit lining for the KCVA Adit | milestone | 0d | 2013-01-26 A | 2013-01-26 A | 821017460, 8210KD010 FS+861d | 100% | 2012-12-29 | 2012-12-29 | mandatory finish 2012-12-15 | 2 - 821 Calendar Day |  | CCC | 821 | 2120 | C090 |  |  |
| 8210MSC06 |  | C6 (11/13, 17 Mar '13) - Complete all ducts & structures along KCVA Adit excl. staging area & plant rm | milestone | 0d | 2013-07-31 A | 2013-07-31 A | 8210KD010 FS+973d, 821012380, 821012670 | 100% |  |  | finish on or after 2013-03-17 | 2 - 821 Calendar Day |  | CCC | 821 | 2120 | C090 |  |  |
| 8210MSC07 |  | C7 (02/14, 12 Jan '14) - Complete all structures along KCVA Adit including blockwalls & partition walls | milestone | 0d | 2014-01-12 A | 2014-01-12 A | 8210KD010 FS+1274d, 821012310 | 100% |  |  | finish on or after 2014-01-12 | 2 - 821 Calendar Day |  | CCC | 821 | 2120 | C090 |  |  |
| 8210MSC08 |  | C8 (43/14, 26 Oct '14) - Complete all works in this Cost Centre | milestone | 0d | 2014-10-26 A | 2014-10-26 A | 821012340, 8210KD010 FS+1561d, 821016450 | 100% |  |  | finish on or after 2014-10-26 | 2 - 821 Calendar Day |  | CCC | 821 | 2120 | C090 |  |  |
|  | 4 | **Design Submission** |  |  | 2010-07-12 | 2014-05-31 |  |  |  |  |  |  |  |  |  |  |  |  |  |
|  | 1 | **Portal Site Formation - Temporary Support** |  |  | 2010-07-12 | 2011-03-02 |  |  |  |  |  |  |  |  |  |  |  |  |  |
| 821011090 |  | Submit Portal Design for approval |  | 48d | 2010-07-12 A | 2010-09-06 A | 821011550 FF, 821013820 FF, 8210KD000, 821013640 FF | 100% | 2010-07-12 | 2010-09-04 |  |  |  | CCC | 821 | 2120 | C010 | 2 | ARUP |
| 821011180 |  | MTR review portal design |  | 13d | 2010-09-06 A | 2010-09-16 A | 821011090, 8210KD010 | 100% | 2010-09-06 | 2010-09-18 |  | 2 - 821 Calendar Day |  | CCC | 821 | 2120 | C010 | 2 | ARUP |
| 821011580 |  | Resubmit portal design |  | 6d | 2010-09-16 A | 2010-11-01 A | 821011180 FF+8d, 821011090 | 100% | 2010-09-16 | 2010-09-22 |  |  |  | CCC | 821 | 2120 | C010 | 2 | ARUP |
| 821011590 |  | Approve portal design |  | 14d | 2010-11-01 A | 2010-11-10 A | 8210KD010, 821011580 | 100% | 2010-11-01 | 2010-11-14 |  | 2 - 821 Calendar Day |  | CCC | 821 | 2120 | C010 | 2 | ARUP |
| 821011880 |  | Design noise enclosure |  | 24d | 2010-11-22 A | 2010-12-20 A | 8210KD010 FS+69d | 100% | 2010-11-22 | 2010-12-18 |  |  |  | CCC | 821 | 2120 | C010 | 3 |  |
| 821011930 |  | Design blasting door |  | 24d | 2010-11-22 A | 2010-12-20 A | 8210KD010 FS+90d | 100% | 2010-11-22 | 2010-12-18 |  |  |  | CCC | 821 | 2120 | C010 | 4 |  |
| 821012150 |  | Procure temporary ventilation system |  | 48d | 2010-12-01 A | 2011-03-02 A | 821012140 | 100% | 2010-12-01 | 2011-01-17 |  | 2 - 821 Calendar Day |  | CCC | 821 | 2120 | C010 |  |  |
| 821011960 |  | Design temporary ventilation system |  | 24d | 2010-12-07 A | 2010-12-28 A | 8210KD010 FS+50d | 100% | 2010-12-07 | 2010-12-30 |  | 2 - 821 Calendar Day |  | CCC | 821 | 2120 | C010 |  |  |
| 821011900 |  | Approve noise enclosure |  | 28d | 2010-12-20 A | 2011-01-12 A | 821011880 | 100% | 2010-12-20 | 2011-01-16 |  | 2 - 821 Calendar Day |  | CCC | 821 | 2120 | C010 | 3 |  |
| 821011920 |  | Procure noise enclosure |  | 24d | 2010-12-20 A | 2011-01-13 A | 821011900 | 100% | 2010-12-20 | 2011-01-19 |  |  |  | CCC | 821 | 2120 | C010 | 3 |  |
| 821011940 |  | Approve blasting door |  | 28d | 2010-12-20 A | 2011-01-12 A | 821011930 | 100% | 2010-12-20 | 2011-01-16 |  | 2 - 821 Calendar Day |  | CCC | 821 | 2120 | C010 | 4 |  |
| 821011950 |  | Procure blasting door |  | 24d | 2010-12-20 A | 2011-01-13 A | 821011940 | 100% | 2010-12-20 | 2011-01-19 |  |  |  | CCC | 821 | 2120 | C010 | 4 |  |
| 821012140 |  | Approve temporary ventilation system |  | 28d | 2010-12-29 A | 2011-01-12 A | 821011960 | 100% | 2010-12-29 | 2011-01-25 |  | 2 - 821 Calendar Day |  | CCC | 821 | 2120 | C010 |  |  |

Notes:
- 821011500: Constraints and Assumptions: Initial site survey to be provided within 1 month of the / date of taking possession of the Works Area

| ID | WBS | Activity | Duration | Start | Finish | Predecessors | Complete | Planned start | Planned finish | Calendar | Cost Centre | Sequence | Contracts | Location | Phase of Works | Person in Charge |
| --- | --- | --- | --- | --- | --- | --- | --- | --- | --- | --- | --- | --- | --- | --- | --- | --- |
|  | 4 | **Adit Portal Section - Temporary Support** |  | 2010-07-19 | 2010-10-18 |  |  |  |  |  |  |  |  |  |  |  |
| 821013660 |  | Submit Design Report to MTRC | 38d | 2010-07-19 A | 2010-08-13 A | 8210KD010 | 100% | 2010-07-19 | 2010-08-31 |  | CCC | 2 | 821 | 2120 | C010 | ARUP |
| 821013670 |  | RDO/GEO Consultation and MTRC review | 28d | 2010-08-13 A | 2010-08-27 A | 821013660 | 100% | 2010-08-13 | 2010-09-09 | 2 - 821 Calendar Day | CCC | 2 | 821 | 2120 | C010 | ARUP |
| 821013680 |  | Resubmit Design report | 18d | 2010-08-27 A | 2010-09-13 A | 821013670 | 100% | 2010-08-27 | 2010-09-16 |  | CCC | 2 | 821 | 2120 | C010 | ARUP |
| 821013690 |  | RDO/GEO Consultation and MTRC Approve | 28d | 2010-09-13 A | 2010-09-29 A | 821013680 | 100% | 2010-09-13 | 2010-10-10 | 2 - 821 Calendar Day | CCC | 2 | 821 | 2120 | C010 | ARUP |
| 821013200 |  | Issue drawings for construction | 6d | 2010-09-29 A | 2010-10-18 A | 821013690 | 100% | 2010-09-29 | 2010-10-06 |  | CCC |  | 821 | 2120 | C010 |  |
|  | 5 | **Adit Portal Section - Permanent Support** |  | 2012-07-23 | 2014-05-31 |  |  |  |  |  |  |  |  |  |  |  |
| 821016400 |  | Submit Design Report to MTRC | 38d | 2012-07-23 A | 2013-08-12 A | 821013200 FS+490d | 100% | 2012-07-23 | 2012-09-04 |  | CCC | 2 | 821 | 2120 | C010 | ARUP |
| 821016410 |  | RDO/GEO Consultation and MTRC review | 28d | 2013-08-13 A | 2013-09-21 A | 821016400 | 100% | 2013-08-13 | 2013-09-09 | 2 - 821 Calendar Day | CCC | 2 | 821 | 2120 | C010 | ARUP |
| 821016420 |  | Resubmit Design report | 18d | 2013-09-23 A | 2013-09-27 A | 821016410 | 100% | 2013-09-23 | 2013-10-15 |  | CCC | 2 | 821 | 2120 | C010 | ARUP |
| 821016430 |  | RDO/GEO Consultation and MTRC Approve | 28d | 2013-09-30 A | 2014-05-24 A | 821016420 | 100% | 2013-09-30 | 2013-10-27 | 2 - 821 Calendar Day | CCC | 2 | 821 | 2120 | C010 | ARUP |
| 821016440 |  | Issue drawings for construction | 6d | 2014-05-26 A | 2014-05-31 A | 821016430 | 100% |  |  |  | CCC |  | 821 | 2120 | C010 |  |
|  | 10 | **Geotechnical Features Inspection (Part I)** |  | 2010-08-09 | 2010-11-23 |  |  |  |  |  |  |  |  |  |  |  |
| 821014660 |  | Submit Design Report to MTRC (Part I) | 48d | 2010-08-09 A | 2010-11-13 A | 821011100 | 100% | 2010-08-09 | 2010-10-05 |  | CCC | 2 | 821 | 2120 | C010 | ARUP |
| 821014710 |  | RDO/GEO Consultation and MTRC Approve (Part I) | 28d | 2010-11-13 A | 2010-11-23 A | 821014660 | 100% | 2010-11-13 | 2010-12-10 | 2 - 821 Calendar Day | CCC | 2 | 821 | 2120 | C010 | ARUP |
|  | 2 | **Adit - Temporary Support** |  | 2010-11-01 | 2010-12-09 |  |  |  |  |  |  |  |  |  |  |  |
| 821011300 |  | Prepare & Submit Design Report | 52d | 2010-11-01 A | 2010-11-26 A | 8210KD000 FS+72d | 100% | 2010-11-01 | 2011-01-03 |  | CCC | 2 | 821 | 2120 | C010 | ARUP |
| 821012180 |  | RDO/GEO Consultation and MTRC Approve | 28d | 2010-11-26 A | 2010-12-09 A | 8210KD010, 821011300 | 100% | 2010-11-26 | 2010-12-23 | 2 - 821 Calendar Day | CCC | 2 | 821 | 2120 | C010 | ARUP |
|  | 6 | **Adit - Permanent Support** |  | 2010-11-01 | 2011-12-02 |  |  |  |  |  |  |  |  |  |  |  |
| 821012820 |  | Submit AIP for approval | 26d | 2010-11-01 A | 2010-11-26 A | 8210KD000 FS+106d | 100% | 2010-11-01 | 2010-11-30 |  | CCC | 1 | 821 | 2120 | C010 | ARUP |
| 821012830 |  | Approve AIP | 28d | 2010-11-26 A | 2011-01-31 A | 8210KD010 FS+10d, 821012820 FS+2d | 100% | 2010-11-26 | 2010-12-23 | 2 - 821 Calendar Day | CCC | 1 | 821 | 2120 | C010 | ARUP |
| 821012840 |  | Submit DDA for approval | 30d | 2011-01-31 A | 2011-04-21 A | 821012830 FF+24d, 821012820 | 100% | 2010-12-09 | 2011-01-15 |  | CCC | 2 | 821 | 2120 | C010 | ARUP |
| 821012850 |  | RDO/GEO Consultation and MTRC Review | 28d | 2011-04-21 A | 2011-05-14 A | 8210KD010, 821012840 FS-4d | 100% | 2011-04-21 | 2011-05-18 | 2 - 821 Calendar Day | CCC | 2 | 821 | 2120 | C010 | ARUP |
| 821012855 |  | Resubmit DDA | 19d | 2011-05-14 A | 2011-07-12 A | 821012850 | 100% | 2011-06-22 | 2011-07-14 |  | CCC |  | 821 | 2120 | C010 | ARUP |
| 821012857 |  | RDO/GEO Consultation and MTRC Approve | 28d | 2011-07-12 A | 2011-09-30 A | 821012855 | 100% | 2011-06-30 | 2011-07-27 | 2 - 821 Calendar Day | CCC |  | 821 | 2120 | C010 | ARUP |
| 821012867 |  | Issue drawings for construction | 3d | 2011-09-30 A | 2011-12-02 A | 821012857 | 100% | 2011-09-30 | 2011-10-04 |  | CCC |  | 821 | 2120 | C010 |  |

| ID | WBS | Activity | Duration | Start | Finish | Predecessors | Complete | Planned start | Planned finish | Calendar | Cost Centre | Sequence | Contracts | Location | Phase of Works | Person in Charge |
| --- | --- | --- | --- | --- | --- | --- | --- | --- | --- | --- | --- | --- | --- | --- | --- | --- |
|  | 12 | **Adit - Permanent Internal Structure** |  | 2011-01-27 | 2012-09-14 |  |  |  |  |  |  |  |  |  |  |  |
| 821012350 |  | Submit Design Report for approval (AIP) | 38d | 2011-01-27 A | 2011-05-04 A | 8210KD010 FS+180d | 100% | 2011-01-27 | 2011-03-15 |  | CCC | 5 | 821 | 2120 | C010 | ARUP |
| 821015030 |  | Approve Design Report (AIP) | 28d | 2011-05-04 A | 2011-09-20 A | 821012350 | 100% | 2011-04-28 | 2011-05-25 | 2 - 821 Calendar Day | CCC | 5 | 821 | 2120 | C010 | ARUP |
| 821015040 |  | Prepare & Submit DDA | 30d | 2011-09-20 A | 2011-11-30 A | 821015030 | 100% | 2011-05-27 | 2011-07-02 |  | CCC | 5 | 821 | 2120 | C010 | ARUP |
| 821015050 |  | RDO/GEO Consultation and MTRC Approve | 28d | 2011-12-01 A | 2011-12-28 A | 821015040 | 100% |  |  | 2 - 821 Calendar Day | CCC | 5 | 821 | 2120 | C010 | ARUP |
| 821015250 |  | Issue drawings for construction | 6d | 2011-12-29 A | 2012-09-14 A | 821015050 | 100% | 2011-12-29 | 2012-01-05 |  | CCC |  | 821 | 2120 | C010 |  |
|  | 13 | **Adit - ABWF Work** |  | 2012-06-18 | 2013-01-05 |  |  |  |  |  |  |  |  |  |  |  |
| 821015280 |  | Prepare & Submit DDA | 30d | 2012-06-18 A | 2012-09-28 A | 8210KD010 FS+700d | 100% | 2012-06-18 | 2012-07-24 |  | CCC | 5 | 821 | 2120 | C010 | ARUP |
| 821015290 |  | MTRC Approve | 28d | 2012-09-28 A | 2013-01-05 A | 821015280 | 100% | 2012-09-28 | 2012-10-26 | 2 - 821 Calendar Day | CCC | 5 | 821 | 2120 | C010 | ARUP |
|  | 14 | **Adit Junction - Permanent Internal Structure** |  | 2011-01-27 | 2013-12-03 |  |  |  |  |  |  |  |  |  |  |  |
| 821014980 |  | Submit Design Report for approval (AIP) | 38d | 2011-01-27 A | 2011-04-06 A | 8210KD010 FS+235d | 100% | 2011-01-27 | 2011-03-15 |  | CCC | 5 | 821 | 2120 | C010 | ARUP |
| 821015270 |  | Approve Design Report (AIP) | 28d | 2011-04-06 A | 2012-01-31 A | 821014980 | 100% | 2011-04-06 | 2011-05-03 | 2 - 821 Calendar Day | CCC | 5 | 821 | 2120 | C010 | ARUP |
| 821015300 |  | Prepare & Submit DDA | 30d | 2012-07-23 A | 2013-07-08 A | 821015270 | 100% | 2012-07-23 | 2012-08-25 |  | CCC | 5 | 821 | 2120 | C010 | ARUP |
| 821015310 |  | RDO/GEO Consultation and MTRC Approve | 28d | 2013-07-09 A | 2013-09-05 A | 821015300 | 100% | 2013-07-09 | 2013-08-05 | 2 - 821 Calendar Day | CCC | 5 | 821 | 2120 | C010 | ARUP |
| 821015370 |  | Issue drawings for construction | 6d | 2013-09-06 A | 2013-12-03 A | 821015310 | 100% | 2013-09-30 | 2013-10-07 |  | CCC |  | 821 | 2120 | C010 |  |
|  | 15 | **Adit Junction - ABWF Work** |  | 2012-06-18 | 2013-07-26 |  |  |  |  |  |  |  |  |  |  |  |
| 821015320 |  | Prepare & Submit DDA | 36d | 2012-06-18 A | 2013-06-28 A | 8210KD010 FS+700d | 100% | 2012-06-18 | 2012-07-31 |  | CCC | 5 | 821 | 2120 | C010 | ARUP |
| 821015330 |  | MTRC Approve | 28d | 2013-06-29 A | 2013-07-26 A | 821015320 | 100% |  |  | 2 - 821 Calendar Day | CCC | 5 | 821 | 2120 | C010 | ARUP |
|  | 16 | **Twin Track Tunnel - Permanent Internal Structure** |  | 2011-01-27 | 2013-04-02 |  |  |  |  |  |  |  |  |  |  |  |
| 821014990 |  | Submit Design Report for approval (AIP) | 38d | 2011-01-27 A | 2012-01-31 A | 8210KD010 FS+480d | 100% | 2011-11-30 | 2012-01-16 |  | CCC | 5 | 821 | 2120 | C010 | ARUP |
| 821015340 |  | Approve Design Report (AIP) | 28d | 2012-02-01 A | 2012-07-20 A | 821014990 | 100% | 2012-02-01 | 2012-02-28 | 2 - 821 Calendar Day | CCC | 5 | 821 | 2120 | C010 | ARUP |
| 821015350 |  | Prepare & Submit DDA | 30d | 2012-07-21 A | 2013-02-07 A | 821015340 | 100% | 2012-07-23 | 2012-08-25 |  | CCC | 5 | 821 | 2120 | C010 | ARUP |
| 821015360 |  | RDO/GEO Consultation and MTRC Approve | 28d | 2013-02-08 A | 2013-03-08 A | 821015350 | 100% | 2013-02-08 | 2013-03-07 | 2 - 821 Calendar Day | CCC | 5 | 821 | 2120 | C010 | ARUP |
| 821015380 |  | Issue drawings for construction | 6d | 2013-03-09 A | 2013-04-02 A | 821015360 | 100% | 2013-03-09 | 2013-03-15 |  | CCC |  | 821 | 2120 | C010 |  |

| ID | WBS | Activity | Duration | Start | Finish | Predecessors | Complete | Planned start | Planned finish | Calendar | Cost Centre | Sequence | Contracts | Location | Phase of Works | Person in Charge |
| --- | --- | --- | --- | --- | --- | --- | --- | --- | --- | --- | --- | --- | --- | --- | --- | --- |
|  | 3 | **Adit Junction to Twin Track Tunnel - Temporary Support (including By-pass)** |  | 2010-12-18 | 2011-12-20 |  |  |  |  |  |  |  |  |  |  |  |
| 821012190 |  | Submit Design Report to MTRC | 38d | 2010-12-18 A | 2011-04-06 A | 8210KD010 FS+220d | 100% | 2010-12-18 | 2011-02-07 |  | CCC | 2 | 821 | 2120 | C010 | ARUP |
| 821012200 |  | RDO/GEO Consultation and MTRC review | 24d | 2011-04-06 A | 2011-04-30 A | 821012190 | 100% | 2011-04-06 | 2011-05-07 |  | CCC | 2 | 821 | 2120 | C010 | ARUP |
| 821012220 |  | Resubmit Design report | 18d | 2011-04-30 A | 2011-10-04 A | 821012200 | 100% | 2011-04-30 | 2011-05-23 |  | CCC | 2 | 821 | 2120 | C010 | ARUP |
| 821012230 |  | RDO/GEO Consultation and MTRC Approve | 24d | 2011-10-04 A | 2011-12-20 A | 821012220 | 100% | 2011-05-20 | 2011-06-17 |  | CCC | 2 | 821 | 2120 | C010 | ARUP |
|  | 7 | **Adit Junction to Twin Track Tunnel - Permanent Support** |  | 2010-10-12 | 2013-12-03 |  |  |  |  |  |  |  |  |  |  |  |
| 821012860 |  | Submit AIP for approval | 38d | 2010-10-12 A | 2010-11-09 A | 8210KD010 FS+220d | 100% | 2010-10-12 | 2010-11-25 |  | CCC | 2 | 821 | 2120 | C010 | ARUP |
| 821012880 |  | Approve AIP | 28d | 2010-11-09 A | 2011-06-14 A | 821012860 | 100% | 2010-11-09 | 2010-12-06 | 2 - 821 Calendar Day | CCC | 2 | 821 | 2120 | C010 | ARUP |
| 821012890 |  | Prepare & Submit DDA | 48d | 2011-06-01 A | 2012-04-10 A | 821012860, 821012880 FF+6d | 100% | 2011-06-01 | 2011-07-28 |  | CCC | 2 | 821 | 2120 | C010 | ARUP |
| 821012900 |  | RDO/GEO Consultation and MTRC review | 28d | 2011-06-30 A | 2012-11-07 A | 821012890 | 100% | 2011-06-30 | 2011-07-27 | 2 - 821 Calendar Day | CCC | 2 | 821 | 2120 | C010 | ARUP |
| 821012902 |  | Resubmit DDA | 18d | 2012-11-08 A | 2013-04-23 A | 821012900 | 100% | 2012-11-08 | 2012-11-28 |  | CCC |  | 821 | 2120 | C010 | ARUP |
| 821012904 |  | RDO/GEO Consultation and MTRC Approve | 28d | 2013-04-24 A | 2013-08-02 A | 821012902 | 100% | 2013-04-24 | 2013-05-21 | 2 - 821 Calendar Day | CCC |  | 821 | 2120 | C010 | ARUP |
| 821015390 |  | Issue drawings for construction | 6d | 2013-08-03 A | 2013-12-03 A | 821012904 | 100% | 2013-08-03 | 2013-08-09 |  | CCC |  | 821 | 2120 | C010 |  |
|  | 8 | **Hoarding Plan** |  | 2010-07-19 | 2010-09-27 |  |  |  |  |  |  |  |  |  |  |  |
| 821013090 |  | Prepare & Submit Hoarding Plan | 23d | 2010-07-19 A | 2010-08-12 A | 8210KD000 | 100% | 2010-07-19 | 2010-08-13 |  | CCC | 2 | 821 | 2120 | C010 | ARUP |
| 821013100 |  | Approve Hoarding Plan | 24d | 2010-08-12 A | 2010-09-27 A | 821013090 | 100% | 2010-08-12 | 2010-09-08 |  | CCC | 2 | 821 | 2120 | C010 | ARUP |
|  | 9 | **Formwork - Adit** |  | 2011-01-11 | 2012-03-13 |  |  |  |  |  |  |  |  |  |  |  |
| 821013780 |  | Submit Design Report to MTRC | 38d | 2011-01-11 A | 2011-11-08 A | 8210KD010 FS+240d | 100% | 2011-01-11 | 2011-02-26 |  | CCC | 2 | 821 | 2120 | C010 | ARUP |
| 821013790 |  | MTRC review | 28d | 2011-11-08 A | 2011-11-23 A | 821013780 | 100% | 2011-11-08 | 2011-12-05 | 2 - 821 Calendar Day | CCC | 2 | 821 | 2120 | C010 | ARUP |
| 821013800 |  | Resubmit Design report | 18d | 2011-11-23 A | 2012-02-23 A | 821013790 | 100% | 2011-11-23 | 2011-12-13 |  | CCC | 2 | 821 | 2120 | C010 | ARUP |
| 821013810 |  | MTRC Approve | 28d | 2012-02-23 A | 2012-03-13 A | 821013800 | 100% | 2012-02-23 | 2012-03-21 | 2 - 821 Calendar Day | CCC | 2 | 821 | 2120 | C010 | ARUP |
|  | 11 | **Blasting Permit (Part I) - Adit** |  | 2010-07-19 | 2011-02-16 |  |  |  |  |  |  |  |  |  |  |  |
| 821011100 |  | Appoint independent RPEngineer(Geotechnical) RPE(G) to carry out detail inspection | 18d | 2010-07-19 A | 2010-08-02 A | 8210KD010 | 100% | 2010-07-19 | 2010-08-07 |  | CCC | 1 | 821 | 2120 | C010 |  |
| 821011110 |  | RPE(G) to advise the monitor rqd. during blasting and allowable PPV geotechnical features | 38d | 2010-08-02 A | 2010-09-21 A | 821011100 | 100% | 2010-08-02 | 2010-09-14 |  | CCC | 1 | 821 | 2120 | C010 |  |
| 821011120 |  | Prepare own blasting assessment report(CBAR) | 20d | 2010-08-23 A | 2010-09-24 A | 821011110 FF | 100% | 2010-08-23 | 2010-09-14 |  | CCC | 1 | 821 | 2120 | C010 | ARUP |
| 821011850 |  | Prepare Blasting MS for application of blasting licences and blasting permits from COM | 18d | 2010-08-23 A | 2010-11-05 A | 8210KD010 SS, 821011123 SS | 100% | 2010-08-23 | 2010-09-11 |  | CCC | 2 | 821 | 2120 | C010 |  |
| 821011121 |  | Comment CBAR | 21d | 2010-09-24 A | 2010-10-12 A | 821011120 | 100% | 2010-09-24 | 2010-10-14 | 2 - 821 Calendar Day | CCC | 1 | 821 | 2120 | C010 |  |
| 821011122 |  | Resubmit CBAR | 12d | 2010-10-12 A | 2010-10-29 A | 821011121 | 100% | 2010-10-12 | 2010-10-26 |  | CCC | 1 | 821 | 2120 | C010 |  |
| 821011123 |  | Approve CBAR | 21d | 2010-11-05 A | 2010-12-02 A | 821011700 FF, 821014710 FF, 821011122 | 100% | 2010-11-05 | 2010-11-25 | 2 - 821 Calendar Day | CCC | 1 | 821 | 2120 | C010 |  |
| 821011851 |  | Comment Blasting MS and Blasting Permit | 21d | 2010-11-05 A | 2010-12-02 A | 821011850 | 100% | 2010-11-05 | 2010-11-25 | 2 - 821 Calendar Day | CCC | 2 | 821 | 2120 | C010 |  |
| 821011852 |  | Resubmit Blasting MS and Blasting Permit | 12d | 2010-12-02 A | 2010-12-22 A | 821011851 | 100% | 2010-12-02 | 2010-12-15 |  | CCC | 2 | 821 | 2120 | C010 |  |
| 821011860 |  | Prepare Blasting Management Plan (BMP) & submit plan to GEO for comment | 18d | 2010-12-17 A | 2011-01-14 A | 8210KD010, 821011850 SS | 100% | 2010-12-17 | 2011-01-10 |  | CCC | 3 | 821 | 2120 | C010 |  |
| 821011861 |  | Comment BMP | 21d | 2011-01-05 A | 2011-01-14 A | 821011860 | 100% | 2011-01-05 | 2011-01-25 | 2 - 821 Calendar Day | CCC | 3 | 821 | 2120 | C010 |  |
| 821011862 |  | Resubmit BMP | 12d | 2011-01-15 A | 2011-01-26 A | 821011861 | 100% | 2011-01-15 | 2011-01-28 |  | CCC | 3 | 821 | 2120 | C010 |  |
| 821011853 |  | Approve Blasting MS and Blasting Permit | 21d | 2011-01-25 A | 2011-02-16 A | 821011852 | 100% | 2011-01-25 | 2011-02-14 | 2 - 821 Calendar Day | CCC | 2 | 821 | 2120 | C010 |  |
| 821011863 |  | Approve BMP | 21d | 2011-01-25 A | 2011-02-16 A | 821011862, 821012180 | 100% | 2011-01-25 | 2011-02-14 | 2 - 821 Calendar Day | CCC | 3 | 821 | 2120 | C010 |  |

| ID | WBS | Activity | Duration | Start | Finish | Predecessors | Complete | Planned start | Planned finish | Calendar | Cost Centre | Sequence | Contracts | Location | Phase of Works | Person in Charge |
| --- | --- | --- | --- | --- | --- | --- | --- | --- | --- | --- | --- | --- | --- | --- | --- | --- |
|  | 18 | **Explosive Magazine** |  | 2010-12-20 | 2011-05-20 |  |  |  |  |  |  |  |  |  |  |  |
| 821012135 |  | Prepare Mode A store licence | 24d | 2010-12-20 A | 2011-01-24 A | 8210AC085 | 100% | 2010-12-20 | 2011-01-19 |  | CCC | 4 | 821 | 3010 | C010 |  |
| 821012145 |  | Comment Mode A store licence | 21d | 2011-01-27 A | 2011-03-25 A | 821012135 | 100% | 2011-01-27 | 2011-02-16 | 2 - 821 Calendar Day | CCC | 4 | 821 | 3010 | C010 |  |
| 821012155 |  | Resubmit Mode A store licence | 12d | 2011-03-26 A | 2011-04-11 A | 821012145 | 100% | 2011-03-26 | 2011-04-09 |  | CCC | 4 | 821 | 3010 | C010 |  |
| 821012165 |  | Approve Mode A store licence | 21d | 2011-04-12 A | 2011-05-20 A | 821012155 | 100% | 2011-04-12 | 2011-05-02 | 2 - 821 Calendar Day | CCC | 4 | 821 | 3010 | C010 |  |
|  | 2 | **Submissions** |  | 2010-07-29 | 2014-08-01 |  |  |  |  |  |  |  |  |  |  |  |
|  | 2 | **Method Statement** |  | 2010-08-12 | 2011-01-27 |  |  |  |  |  |  |  |  |  |  |  |
| 821010650 |  | Submission of M.S. for Kwai Chung Portal & Adit construction | 24d | 2010-08-12 A | 2010-11-16 A | 821011090 FF+2d | 100% | 2010-08-12 | 2010-09-08 |  | CCC | 1 | 821 | 2120 | C010 |  |
| 821016154 |  | Submission of M.S. for CLP transformer room construction | 24d | 2010-09-11 A | 2010-10-11 A | 8210KD010 FS+40d | 100% |  |  |  | CCC | 1 | 821 | 2120 | C010 |  |
| 821016164 |  | Approve M.S. for CLP transformer room construction | 24d | 2010-10-11 A | 2010-11-16 A | 821016154 | 100% | 2010-10-11 | 2010-11-08 |  | CCC | 1 | 821 | 2120 | C010 |  |
| 821010690 |  | Approve M.S. for Kwai Chung Portal & Adit construction | 24d | 2010-11-16 A | 2010-12-07 A | 821010650, 8210KD010 | 100% | 2010-11-16 | 2010-12-13 |  | CCC | 1 | 821 | 2120 | C010 |  |
| 821016224 |  | Submission of M.S. for Nam Cheong Barging Point construction | 24d | 2010-11-22 A | 2010-12-30 A | 8210KD010 FS+90d | 100% | 2010-11-22 | 2010-12-18 |  | CCC | 1 | 821 | 2120 | C010 |  |
| 821016234 |  | Approve M.S. for Nam Cheong Barging Point construction | 24d | 2010-12-30 A | 2011-01-27 A | 821016224 | 100% |  |  |  | CCC | 1 | 821 | 2120 | C010 |  |
|  | 5 | **TTMS** |  | 2010-07-29 | 2010-11-29 |  |  |  |  |  |  |  |  |  |  |  |
| 821013860 |  | Prepare & Submit TTMS (Site ingress/egress) | 38d | 2010-07-29 A | 2010-08-21 A | 8210KD010 FS+10d | 100% | 2010-07-29 | 2010-09-10 |  | CCC | 1 | 821 | 2120 | C040 | ARUP |
| 821013870 |  | Approve TTMS | 28d | 2010-08-21 A | 2010-09-10 A | 821013860 FF | 100% | 2010-08-21 | 2010-09-17 | 2 - 821 Calendar Day | CCC | 1 | 821 | 2120 | C040 | ARUP |
| 821013880 |  | RMO Notification | 14d | 2010-09-10 A | 2010-09-24 A | 821013870 | 100% | 2010-09-10 | 2010-09-23 | 2 - 821 Calendar Day | CCC | 1 | 821 | 2120 | C040 | ARUP |
| 821015540 |  | Prepare & Submit Traffic impact study (Nam Tei Quarry) | 30d | 2010-10-04 A | 2010-11-19 A | 8210KD010 FS+77d | 100% | 2010-10-04 | 2010-11-08 |  | CCC |  | 821 | 2120 | C040 | ARUP |
| 821015550 |  | Approve TTMS (Nam Tei Quarry) | 48d | 2010-11-19 A | 2010-11-29 A | 821015540 | 100% | 2010-11-19 | 2011-01-05 | 2 - 821 Calendar Day | CCC |  | 821 | 2120 | C040 | ARUP |
|  | 1 | **Completion** |  | 2014-04-01 | 2014-08-01 |  |  |  |  |  |  |  |  |  |  |  |
| 821013250 |  | Prepare and submit as-built drawings under Ref 4A | 72d | 2014-04-01 A | 2014-07-11 A | 8210KD030 | 100% | 2014-04-01 | 2014-07-02 |  | CCC |  | 821 | 2120 | C010 |  |
| 821013260 |  | Prepare and submit as-built drawings under Ref 4F | 72d | 2014-04-01 A | 2014-08-01 A | 8210KD100 | 100% | 2014-04-01 | 2014-07-02 |  | CCC |  | 821 | 2120 | C010 |  |
| 821013210 |  | Prepare and submit as-built drawings under Ref 4E | 72d | 2014-06-03 A | 2014-07-28 A | 8210KD090 | 100% | 2014-06-03 | 2014-08-26 |  | CCC |  | 821 | 2120 | C010 |  |
|  | 5 | **Procurement** |  | 2010-09-13 | 2013-07-15 |  |  |  |  |  |  |  |  |  |  |  |
| 821011510 |  | Hoarding procurement | 12d | 2010-09-13 A | 2010-09-28 A | 821013100 | 100% | 2010-07-17 | 2010-07-30 |  | CCC | 1 | 821 | 2120 | C030 |  |
| 821011865 |  | Procure explosive delivery vehicle | 24d | 2010-12-06 A | 2011-03-04 A | 8210KD010 FS+140d | 100% | 2010-12-06 | 2011-01-05 |  | CCC | 1 | 821 | 2120 | C030 |  |
| 821012050 |  | Drainage procurement | 28d | 2011-05-03 A | 2011-06-04 A | 8210KD010 FS+286d | 100% | 2011-05-31 | 2011-07-04 |  | CCC |  | 821 | 2120 | C030 |  |
| 821011630 |  | Waterproofing procurement | 28d | 2011-05-25 A | 2011-06-27 A | 8210KD010 FS+310d | 100% |  |  |  | CCC |  | 821 | 2120 | C030 |  |
| 821010940 |  | Shutter Procurement | 84d | 2011-07-07 A | 2011-10-21 A | 821012867 | 100% | 2011-07-07 | 2011-10-15 |  | CCC | 1 | 821 | 2120 | C030 |  |
| 821010950 |  | Shutter Delivery to site | 24d | 2011-12-19 A | 2012-01-18 A | 821012850, 821010940 FS+49d | 100% |  |  |  | CCC | 1 | 821 | 2120 | C030 |  |
| 821011570 |  | ABWF works procurement | 28d | 2013-03-18 A | 2013-04-23 A | 821015290, 821015330 FS+200d, 821015280 | 100% |  |  |  | CCC |  | 821 | 2120 | C030 |  |
| 821015860 |  | E&M works procurement | 28d | 2013-04-02 A | 2013-07-15 A | 8210KD010 FS+984d | 100% | 2013-04-02 | 2013-05-06 |  | CCC |  | 821 | 2120 | C030 |  |

| ID | WBS | Activity | Type | Duration | Start | Finish | Predecessors | Complete | Planned start | Planned finish | Constraint | Calendar | Resources | Cost Centre | Sequence | Contracts | Location | Phase of Works |
| --- | --- | --- | --- | --- | --- | --- | --- | --- | --- | --- | --- | --- | --- | --- | --- | --- | --- | --- |
|  | 3 | **Construction** |  |  | 2010-07-17 | 2015-03-28 |  |  |  |  |  |  |  |  |  |  |  |  |
|  | 10 | **Site Establishment** |  |  | 2010-07-17 | 2010-10-22 |  |  |  |  |  |  |  |  |  |  |  |  |
| 821011875 |  | Site clearance at Portal |  | 6d | 2010-07-17 A | 2010-08-02 A | 8210KD010 FS+8d | 100% | 2010-07-17 | 2010-07-23 |  |  |  | CCC | 1 | 821 | 2120 | C020 |
| 821011665 |  | Confirm Tree Removal Application Plan P.4.6.2 |  | 14d | 2010-07-19 A | 2010-08-01 A | 8210KD010 | 100% |  |  |  | 2 - 821 Calendar Day |  | CCC |  | 821 | 2120 | C020 |
| 821010710 |  | Initial site survey |  | 24d | 2010-08-02 A | 2010-08-28 A | 821010180, 8210AC030, 8210AC020 | 100% |  |  |  |  | Contractor Surveyor / Land Surveyor [768 h]; Survey Equipment [384 h] | CCA | 1 | 821 | 2120 | C020 |
| 821010720 |  | Review Employer's condition survey |  | 15d | 2010-08-02 A | 2010-08-16 A | 8210AC030, 8210AC020 | 100% |  |  |  | 2 - 821 Calendar Day |  | CCA |  | 821 | 2120 | C020 |
| 821010750 |  | Pre-construction CCTV survey of all affected Drains |  | 30d | 2010-08-02 A | 2010-09-04 A | 8210AC030, 8210AC020 | 100% |  |  |  |  | Contractor Technical Staff / Supervisor [240 h]; CCTV Equipment [240 h] | CCA |  | 821 | 2120 | C020 |
| 821010860 |  | Site Clearance |  | 18d | 2010-08-05 A | 2010-08-27 A | 8210AC020 FS+3d, 821011875, 8210AC030 FS+3d | 100% |  |  |  | 3 - 821 VB & External (6 Work day &10d incl. weath. May-Oct) | Excavation - Soft [2467 m3]; Rebar [2.95 T]; Backhoe [144 h]; Backhoe with Breaker [120 h]; Other Skill Labour (Civil) [288 h]; Plant Operator [432 h] | CCA |  | 821 | 2120 | C020 |
| 821014790 |  | Ground investigation at Kwai Chung Site |  | 12d | 2010-08-13 A | 2010-09-28 A | 821012934 FF, 8210KD010 FS+35d | 100% | 2010-08-13 | 2010-08-26 |  |  |  | CCC | 1 | 821 | 2120 | C020 |
| 821010725 |  | Carry out condition survey |  | 15d | 2010-08-19 A | 2010-09-04 A | 821010720 FS+16d | 100% |  |  |  | 3 - 821 VB & External (6 Work day &10d incl. weath. May-Oct) | Contractor Surveyor / Land Surveyor [240 h] | CCC |  | 821 | 2120 | C020 |
| 821010740 |  | Instrumentation and monitoring |  | 12d | 2010-08-26 A | 2010-09-22 A | 8210KD010 FS+30d, 821014780 | 100% | 2010-08-26 | 2010-09-08 |  | 3 - 821 VB & External (6 Work day &10d incl. weath. May-Oct) | Survey Equipment [96 h]; Other Skill Labour (Civil) [192 h]; Contractor Surveyor / Land Surveyor [96 h]; Contractor Technical Staff / Supervisor [96 h] | CCA |  | 821 | 2120 | C020 |
| 821010730 |  | Submit initial site survey report |  | 12d | 2010-08-28 A | 2010-09-09 A | 821010710, 821010580, 821010590 | 100% | 2010-08-28 | 2010-09-08 |  | 2 - 821 Calendar Day |  | CCC | 1 | 821 | 2120 | C020 |
| 821012440 |  | Temporary power and water supply |  | 20d | 2010-08-28 A | 2010-09-30 A | 821010860 | 100% | 2010-08-28 | 2010-09-22 |  | 3 - 821 VB & External (6 Work day &10d incl. weath. May-Oct) |  | CCC |  | 821 | 2120 | C020 |
| 821012622 |  | Erect Fencing/Hoarding for Area 9.2 |  | 21d | 2010-09-20 A | 2010-10-18 A | 821011510, 821013880 FF+24d, 8210AC030 FS+24d, 821013100 | 100% |  |  |  | 3 - 821 VB & External (6 Work day &10d incl. weath. May-Oct) | Other Skill Labour (Civil) [336 h]; Plant Operator [168 h]; Welder [168 h]; Welding Machine [168 h] | CCC |  | 821 | 2120 | C020 |
| 821010890 |  | Tree transplant by 801 | milestone | 0d | 2010-09-27 A | 2010-09-27 A | 821014770, 821011665 | 100% |  |  | mandatory finish 2010-09-27 | 3 - 821 VB & External (6 Work day &10d incl. weath. May-Oct) |  | CCA |  | 821 | 2120 | C020 |
| 821011660 |  | Site installation work |  | 18d | 2010-09-29 A | 2010-10-22 A | 821010860, 821010860 SS, 821012622 FF+4d | 100% |  |  |  | 3 - 821 VB & External (6 Work day &10d incl. weath. May-Oct) | Concretor [576 h]; Welder [288 h]; Drainlayer [288 h]; Mason [288 h]; Metal worker [576 h]; Plumber [576 h]; Glazier [576 h]; Electrician [288 h]; Mechanic [576 h]; Other Skill Labour (BS / E&M) [576 h]; Welding Machine [144 h]; Carpenter [288 h]; Backhoe [144 h]; Crane Lorry [144 h]; Plant Operator [1152 h]; Other Skill Labour (Civil) [288 h]; Steel Fixer [288 h]; Concrete [240 m3] | CCA |  | 821 | 2120 | C020 |
|  | 2 | **CLP Transformer Room** |  |  | 2010-10-20 | 2010-12-20 |  |  |  |  |  |  |  |  |  |  |  |  |
| 821016174 |  | Trench excavation for power cables |  | 7d | 2010-10-20 A | 2010-10-27 A | 821016164 | 100% |  |  |  | 3 - 821 VB & External (6 Work day &10d incl. weath. May-Oct) | Other Skill Labour (Civil) [280 h]; Backhoe [56 h]; Plant Operator [280 h] | CCC |  | 821 | 2120 | C110 |
| 821016184 |  | Construction of structure works |  | 28d | 2010-10-27 A | 2010-11-15 A | 821016174 SS+2d | 100% | 2010-10-27 | 2010-11-27 |  | 3 - 821 VB & External (6 Work day &10d incl. weath. May-Oct) | Other Skill Labour (Civil) [1120 h]; Crane Lorry [224 h]; Plant Operator [224 h] | CCC |  | 821 | 2120 | C080 |
| 821016194 |  | Finishing works |  | 14d | 2010-11-20 A | 2010-12-06 A | 821016184 SS+22d | 100% | 2010-11-17 | 2010-12-02 |  | 3 - 821 VB & External (6 Work day &10d incl. weath. May-Oct) | Other Skill Labour (BS / E&M) [448 h] | CCC |  | 821 | 2120 | C100 |
| 821016204 |  | Installation of E & M |  | 4d | 2010-11-30 A | 2010-12-03 A | 821016194 SS+11d | 100% |  |  |  | 3 - 821 VB & External (6 Work day &10d incl. weath. May-Oct) | Other Skill Labour (BS / E&M) [128 h] | CCC |  | 821 | 2120 | C110 |
| 821016214 |  | Handover transformer room to CLP | milestone | 0d | 2010-12-20 A | 2010-12-20 A | 821016204 | 100% |  |  | finish on 2010-12-20 | 3 - 821 VB & External (6 Work day &10d incl. weath. May-Oct) |  | CCC |  | 821 | 2120 | C110 |
|  | 11 | **Nam Cheong Barging Point** |  |  | 2010-12-07 | 2015-03-28 |  |  |  |  |  |  |  |  |  |  |  |  |
| 821016244 |  | Site formation - stock pile & drainage |  | 12d | 2010-12-07 A | 2010-12-20 A | 821016234 | 100% |  |  |  | 3 - 821 VB & External (6 Work day &10d incl. weath. May-Oct) | Backhoe [96 h]; Other Skill Labour (Civil) [480 h]; Plant Operator [96 h] | CCC |  | 821 | 2120 | C020 |
| 821016254 |  | Construct footings for ramp |  | 6d | 2010-12-21 A | 2010-12-29 A | 821016244 | 100% |  |  |  | 3 - 821 VB & External (6 Work day &10d incl. weath. May-Oct) | Other Skill Labour (Civil) [240 h]; Crane Lorry [48 h]; Plant Operator [48 h] | CCC |  | 821 | 2120 | C020 |
| 821016294 |  | Constrcut wheel washer |  | 8d | 2010-12-28 A | 2011-01-06 A | 821016254 SS+3d | 100% |  |  |  | 3 - 821 VB & External (6 Work day &10d incl. weath. May-Oct) | Other Skill Labour (BS / E&M) [256 h] | CCC |  | 821 | 2120 | C020 |
| 821016264 |  | Erect steel ramp (8m) & noise cover frame |  | 18d | 2010-12-30 A | 2011-01-20 A | 821016254 | 100% |  |  |  | 3 - 821 VB & External (6 Work day &10d incl. weath. May-Oct) | Other Skill Labour (BS / E&M) [576 h] | CCC |  | 821 | 2120 | C020 |
| 821016274 |  | Constrcut bollards |  | 14.25d | 2011-01-21 A | 2011-02-09 A | 821016264 | 100% |  |  |  | 3 - 821 VB & External (6 Work day &10d incl. weath. May-Oct) | Other Skill Labour (BS / E&M) [224 h] | CCC |  | 821 | 2120 | C020 |
| 821016304 |  | Constrcut slab & Install weighbridge |  | 18.25d | 2011-01-21 A | 2011-02-14 A | 821016294, 821016264 | 100% |  |  |  | 3 - 821 VB & External (6 Work day &10d incl. weath. May-Oct) | Other Skill Labour (BS / E&M) [320 h] | CCC |  | 821 | 2120 | C020 |
| 821016284 |  | Inspection & Operation | milestone | 0d | 2011-02-24 A | 2011-02-24 A | 821016304, 821016274 | 100% | 2011-02-25 | 2011-02-25 | finish on or before 2011-03-31 | 3 - 821 VB & External (6 Work day &10d incl. weath. May-Oct) |  | CCC |  | 821 | 2120 | C020 |
| 821017580 |  | Reinstatement of Nam Cheong Barging Point |  | 60d | 2015-01-02 A | 2015-03-28 A | 8210KD120 FS+250d, 8210KD050, 821016284 | 100% | 2015-01-02 | 2015-03-16 |  | 3 - 821 VB & External (6 Work day &10d incl. weath. May-Oct) | Other Skill Labour (BS / E&M) [320 h] | CCC |  | 821 | 2120 | C020 |

Notes:
- 821010710: Constraints and Assumptions: Initial site survey to be provided within 1 month of the / date of taking possession of the Works Area
- 821010720: Constraints and Assumptions: Submit at least 8 weeks prior to any construction activity / within 100m of the potentially affected EBS

| ID | WBS | Activity | Type | Duration | Start | Finish | Predecessors | Complete | Planned start | Planned finish | Constraint | Calendar | Resources | Cost Centre | Contracts | Location | Phase of Works |
| --- | --- | --- | --- | --- | --- | --- | --- | --- | --- | --- | --- | --- | --- | --- | --- | --- | --- |
|  | 1 | **Kwai Chung Portal** |  |  | 2010-08-07 | 2014-10-07 |  |  |  |  |  |  |  |  |  |  |  |
| 821013640 |  | Site investigation |  | 22d | 2010-08-07 A | 2010-08-25 A | 8210KD000 FS+26d, 821014790 FF | 100% | 2010-08-07 | 2010-09-03 |  | 3 - 821 VB & External (6 Work day &10d incl. weath. May-Oct) | Other Skill Labour (Civil) [384 h]; Drilling rig [384 h]; Plant Operator [384 h] | CCC | 821 | 2120 | C090 |
| 821012630 |  | Rock cut work |  | 24d | 2010-10-12 A | 2010-11-09 A | 821010690, 821011660 SS, 821011560, 821010650, 821011590 FS-1d, 821011090, 821010740, 821010890 FF+5d, 821011150, 821010830 FS+24d, 821012622 SS, 821010730, 821010750, 821010725, 821014230, 8210AC080 FS+9d | 100% |  |  |  | 3 - 821 VB & External (6 Work day &10d incl. weath. May-Oct) | Other Skill Labour (Civil) [384 h]; Backhoe with Breaker [192 h]; Backhoe [192 h]; Dump Truck [192 h]; Excavation - Soft [1248 m3]; Plant Operator [960 h]; Miner [960 h] | CCC | 821 | 2120 | C090 |
| 821012631 |  | Slope stabilization work |  | 24d | 2010-10-18 A | 2010-11-15 A | 821012630 SS+5d | 100% | 2010-10-18 | 2010-11-13 |  | 3 - 821 VB & External (6 Work day &10d incl. weath. May-Oct) | Welding Machine [192 h]; Shotcrete Set [192 h]; Rebar [10 T]; Concrete [120 m3]; Scaffolder [192 h]; Plant Operator [192 h]; Miner [960 h]; Other Skill Labour (Civil) [384 h]; Welder [576 h]; 2-Boom Jumbo [192 h]; Soft Excavation Volume (m3) [14 m3] | CCC | 821 | 2120 | C090 |
| 821015850 |  | Canopy vault implementation |  | 3d | 2010-11-11 A | 2010-11-12 A | 821012631 FS-3d | 100% | 2010-11-11 | 2010-11-13 |  | 3 - 821 VB & External (6 Work day &10d incl. weath. May-Oct) | Miner [80 h] | CCC | 821 | 2120 | C090 |
| 821015870 |  | Construct portal canopy |  | 12d | 2010-11-23 A | 2010-12-10 A | 821015850, 821012631 FS-1d | 100% | 2010-11-23 | 2010-12-06 |  | 3 - 821 VB & External (6 Work day &10d incl. weath. May-Oct) | Grouting Set [104 h]; Plant Operator [624 h]; Miner [520 h]; Tunneller [104 h]; Drilling rig [208 h]; Other Skill Labour (Civil) [208 h]; Crane Lorry [104 h] | CCC | 821 | 2120 | C090 |
| 821016450 |  | Reinstatement - Construct portal / slope permanent support |  | 60d | 2014-06-02 A | 2014-10-07 A | 821016440, 821013850 | 100% | 2014-06-03 | 2014-08-18 |  | 3 - 821 VB & External (6 Work day &10d incl. weath. May-Oct) | Other Skill Labour (Civil) [208 h]; Crane Lorry [104 h]; Drilling rig [208 h]; Grouting Set [104 h]; Tunneller [104 h]; Miner [520 h]; Plant Operator [624 h] | CCC | 821 | 2120 | C090 |
|  | 3 | **Kwai Chung Adit - Drain Tunnel (CH0+033 - 627) (Alternative Alignment)** |  |  | 2010-12-10 | 2014-08-30 |  |  |  |  |  |  |  |  |  |  |  |
|  | 10 | **Excavation - Drill and Blast (Alternative Alignment)** |  |  | 2010-12-10 | 2011-10-24 |  |  |  |  |  |  |  |  |  |  |  |
| 821011890 |  | Top heading & Bottom bench mechanical excavation CH0+033 to CH0+050.1 |  | 53.25d | 2010-12-10 A | 2011-02-01 A | 821014720, 821014740, 821013690, 821013200, 821015870, 821013030 | 100% | 2010-12-10 | 2011-02-17 |  |  | Backhoe with Breaker [852 h]; Loader [176 h]; Crane Lorry [176 h]; Truck Lorry [176 h]; Drilling rig [176 h]; Grouting Set [176 h]; Shotcrete Set [176 h]; Other Skill Labour (Civil) [704 h]; Tunneller [704 h]; Plant Operator [1278 h]; Welder [352 h]; Miner [880 h]; Welder / Fitter [352 h]; Drilling Jumbo [426 h]; Dump Truck [528 h]; Excavation - Hard [1757.25 m3]; Backhoe [176 h] | CCC | 821 | 2120 | C090 |
| 821012132 |  | Pre-assembly blasting door |  | 6d | 2011-01-24 A | 2011-01-27 A | 821011950, 821011890 SS+33d | 100% | 2011-01-24 | 2011-01-29 |  |  | Other Skill Labour (Civil) [192 h]; Plant Operator [480 h]; Welder / Fitter [96 h] | CCC | 821 | 2120 | C090 |
| 821012130 |  | Erect noise enclosure |  | 6.25d | 2011-01-28 A | 2011-02-02 A | 821012625, 821011920 | 100% | 2011-01-28 | 2011-02-08 |  |  | Other Skill Labour (Civil) [192 h]; Plant Operator [480 h]; Welder / Fitter [96 h] | CCC | 821 | 2120 | C090 |
| 821012625 |  | Erect blasting door (Upper part) |  | 5d | 2011-01-28 A | 2011-02-02 A | 821012132 FS-1d | 100% |  |  |  |  | Welder / Fitter [96 h]; Other Skill Labour (Civil) [192 h]; Plant Operator [480 h] | CCC | 821 | 2120 | C090 |
| 821011970 |  | Top heading drill & blast exc w temp support (Ch0+050.1 to 0+75) |  | 21d | 2011-02-17 A | 2011-03-14 A | 821011863, 821012130, 821011890, 821012625, 821012810, 821012165, 821011865, 821011853, 821015550 | 100% | 2011-02-17 | 2011-03-12 | start on 2011-02-17 |  | Drilling Jumbo [504 h]; Cherry Picker [168 h]; Forklift [168 h]; Grouting Set [168 h]; Shotcrete Set [168 h]; Other Skill Labour (Civil) [504 h]; Shortfirer [336 h]; Ganger [336 h]; Tunneller [336 h]; Electrician [336 h]; Mechanic [336 h]; Plant Operator [2856 h]; Welder [336 h]; Explosive Truck Driver [336 h]; Dump Truck [1008 h]; Miner [336 h]; Welder / Fitter [336 h]; Excavation - Hard [6489 m3]; Backhoe [168 h]; Backhoe with Breaker [168 h]; Loader [168 h]; Crane Lorry [168 h]; Truck Lorry [168 h] | CCC | 821 | 2120 | C090 |
| 821012810 |  | Install temporary ventilation system |  | 6.25d | 2011-03-08 A | 2011-03-09 A | 821012130 SS, 821012150 | 100% | 2011-03-08 | 2011-03-15 |  |  | Other Skill Labour (Civil) [192 h]; Welder / Fitter [96 h] | CCC | 821 | 2120 | C090 |
| 821012510 |  | Top heading drill & blast exc w temp support (Ch0+75 to 0+120) |  | 16d | 2011-03-14 A | 2011-03-31 A | 821011970 | 100% |  |  |  |  | Other Skill Labour (Civil) [384 h]; Shortfirer [256 h]; Ganger [256 h]; Tunneller [256 h]; Electrician [256 h]; Mechanic [256 h]; Plant Operator [2176 h]; Welder [256 h]; Explosive Truck Driver [256 h]; Dump Truck [768 h]; Miner [256 h]; Welder / Fitter [256 h]; Excavation - Hard [4944 m3]; Backhoe [128 h]; Backhoe with Breaker [128 h]; Loader [128 h]; Crane Lorry [128 h]; Truck Lorry [128 h]; Drilling Jumbo [384 h]; Cherry Picker [128 h]; Forklift [128 h]; Grouting Set [128 h]; Shotcrete Set [128 h] | CCC | 821 | 2120 | C090 |
| 821012740 |  | Top heading drill & blast exc w temp support (Ch0+120 to 0+200) |  | 16d | 2011-04-01 A | 2011-05-16 A | 821012510 | 100% | 2011-04-01 | 2011-04-20 | finish on 2011-05-07 |  | Forklift [88 h]; Grouting Set [88 h]; Shotcrete Set [88 h]; Other Skill Labour (Civil) [352 h]; Shortfirer [256 h]; Ganger [256 h]; Tunneller [256 h]; Electrician [256 h]; Mechanic [256 h]; Plant Operator [2176 h]; Welder [256 h]; Explosive Truck Driver [256 h]; Dump Truck [768 h]; Miner [256 h]; Welder / Fitter [256 h]; Tower Crane [88 h]; Excavation - Hard [4944 m3]; Backhoe [88 h]; Backhoe with Breaker [88 h]; Loader [88 h]; Crane Lorry [88 h]; Truck Lorry [88 h]; Drilling Jumbo [384 h]; Cherry Picker [88 h] | CCC | 821 | 2120 | C090 |
| 821016066 |  | Erect blasting door (Lower part) |  | 2d | 2011-04-21 A | 2011-04-26 A | 821015480 FS-1d | 100% |  |  |  |  | Other Skill Labour (Civil) [96 h]; Tower Crane [16 h]; Plant Operator [16 h]; Welder / Fitter [96 h] | CCC | 821 | 2120 | C090 |
| 821015480 |  | Bottom bench drill & blast exc w temp support (Ch0+050.1 to 0+100) |  | 7d | 2011-04-26 A | 2011-05-07 A | 821012740 FS-1d | 100% | 2011-04-26 | 2011-05-04 |  |  | Welder [224 h]; Explosive Truck Driver [112 h]; Dump Truck [336 h]; Miner [200 h]; Welder / Fitter [224 h]; Drilling Jumbo [168 h]; Cherry Picker [56 h]; Forklift [56 h]; Shortfirer [224 h]; Ganger [224 h]; Electrician [224 h]; Mechanic [224 h]; Backhoe with Breaker [40 h]; Tower Crane [40 h]; Loader [40 h]; Crane Lorry [40 h]; Truck Lorry [40 h]; Grouting Set [40 h]; Shotcrete Set [40 h]; Other Skill Labour (Civil) [336 h]; Tunneller [224 h]; Plant Operator [1904 h]; Excavation - Hard [2400 m3]; Backhoe [40 h] | CCC | 821 | 2120 | C090 |
| 821013270 |  | Bottom bench drill & blast exc w temp support (Ch0+100 to 0+150) |  | 10d | 2011-05-07 A | 2011-09-05 A | 821016780 | 100% | 2011-05-07 | 2011-05-19 |  |  | Backhoe [40 h]; Backhoe with Breaker [40 h]; Loader [40 h]; Crane Lorry [40 h]; Truck Lorry [40 h]; Drilling Jumbo [168 h]; Cherry Picker [40 h]; Forklift [40 h]; Grouting Set [40 h]; Shotcrete Set [40 h]; Other Skill Labour (Civil) [336 h]; Shortfirer [224 h]; Ganger [224 h]; Tunneller [224 h]; Electrician [224 h]; Plant Operator [1904 h]; Welder [224 h]; Explosive Truck Driver [112 h]; Dump Truck [336 h]; Miner [200 h]; Welder / Fitter [224 h]; Tower Crane [40 h]; Mechanic [224 h]; Excavation - Hard [2400 m3] | CCC | 821 | 2120 | C090 |
| 821013280 |  | Top heading drill & blast exc w temp support (Ch0+200 to 0+250) |  | 10d | 2011-05-16 A | 2011-05-28 A | 821012740 | 100% | 2011-05-16 | 2011-05-26 |  |  | Electrician [320 h]; Mechanic [320 h]; Plant Operator [2720 h]; Welder [320 h]; Explosive Truck Driver [160 h]; Dump Truck [480 h]; Welder / Fitter [320 h]; Tower Crane [48 h]; Miner [320 h]; Excavation - Hard [5590 m3]; Backhoe [48 h]; Backhoe with Breaker [48 h]; Loader [48 h]; Crane Lorry [48 h]; Truck Lorry [48 h]; Drilling Jumbo [240 h]; Cherry Picker [48 h]; Forklift [48 h]; Grouting Set [48 h]; Shotcrete Set [48 h]; Other Skill Labour (Civil) [480 h]; Shortfirer [320 h]; Ganger [320 h]; Tunneller [320 h] | CCC | 821 | 2120 | C090 |
| 821013290 |  | Top heading drill & blast exc w temp support (Ch0+250 to 0+300) |  | 10d | 2011-05-28 A | 2011-06-11 A |  | 100% | 2011-05-27 | 2011-06-08 |  |  | Truck Lorry [48 h]; Drilling Jumbo [240 h]; Cherry Picker [48 h]; Forklift [48 h]; Grouting Set [48 h]; Shotcrete Set [48 h]; Other Skill Labour (Civil) [480 h]; Shortfirer [320 h]; Ganger [320 h]; Tunneller [320 h]; Electrician [320 h]; Mechanic [320 h]; Plant Operator [2720 h]; Welder [320 h]; Explosive Truck Driver [160 h]; Dump Truck [480 h]; Welder / Fitter [320 h]; Tower Crane [48 h]; Miner [320 h]; Excavation - Hard [5590 m3]; Backhoe [48 h]; Backhoe with Breaker [48 h]; Loader [48 h]; Crane Lorry [48 h] | CCC | 821 | 2120 | C090 |
| 821016042 |  | Top heading drill & blast exc w temp support (Ch0+300 to 0+350) |  | 9d | 2011-06-11 A | 2011-06-23 A | 821013290 FS-1d | 100% | 2011-06-11 | 2011-06-21 |  |  | Tunneller [288 h]; Electrician [288 h]; Mechanic [288 h]; Plant Operator [2448 h]; Welder [288 h]; Explosive Truck Driver [144 h]; Dump Truck [432 h]; Welder / Fitter [288 h]; Tower Crane [48 h]; Miner [288 h]; Excavation - Hard [5031 m3]; Backhoe [48 h]; Backhoe with Breaker [48 h]; Loader [48 h]; Crane Lorry [48 h]; Truck Lorry [48 h]; Drilling Jumbo [216 h]; Cherry Picker [48 h]; Forklift [48 h]; Grouting Set [48 h]; Shotcrete Set [48 h]; Other Skill Labour (Civil) [432 h]; Shortfirer [288 h]; Ganger [288 h] | CCC | 821 | 2120 | C090 |
| 821016046 |  | Top heading drill & blast exc w temp support (Ch0+350 to 0+400) |  | 9d | 2011-06-23 A | 2011-07-06 A | 821016042 FS-1d | 100% | 2011-06-23 | 2011-07-04 |  |  | Ganger [288 h]; Tunneller [288 h]; Electrician [288 h]; Mechanic [288 h]; Plant Operator [2448 h]; Welder [288 h]; Explosive Truck Driver [144 h]; Dump Truck [432 h]; Welder / Fitter [288 h]; Tower Crane [48 h]; Miner [288 h]; Excavation - Hard [5031 m3]; Backhoe [48 h]; Backhoe with Breaker [48 h]; Loader [48 h]; Crane Lorry [48 h]; Truck Lorry [48 h]; Drilling Jumbo [216 h]; Cherry Picker [48 h]; Forklift [48 h]; Grouting Set [48 h]; Shotcrete Set [48 h]; Other Skill Labour (Civil) [432 h]; Shortfirer [288 h] | CCC | 821 | 2120 | C090 |
| 821016050 |  | Top heading drill & blast exc w temp support (Ch0+400 to 0+450) |  | 9d | 2011-07-06 A | 2011-07-16 A | 821016046 | 100% | 2011-07-06 | 2011-07-15 |  |  | Electrician [288 h]; Mechanic [288 h]; Plant Operator [2448 h]; Welder [288 h]; Explosive Truck Driver [144 h]; Dump Truck [432 h]; Welder / Fitter [288 h]; Tower Crane [48 h]; Miner [288 h]; Excavation - Hard [5256 m3]; Backhoe [48 h]; Backhoe with Breaker [48 h]; Loader [48 h]; Crane Lorry [48 h]; Truck Lorry [48 h]; Drilling Jumbo [216 h]; Cherry Picker [48 h]; Forklift [48 h]; Grouting Set [48 h]; Shotcrete Set [48 h]; Other Skill Labour (Civil) [432 h]; Shortfirer [288 h]; Ganger [288 h]; Tunneller [288 h] | CCC | 821 | 2120 | C090 |
| 821016054 |  | Top heading drill & blast exc w temp support (Ch0+450 to 0+500) |  | 9d | 2011-07-16 A | 2011-07-27 A | 821016050 | 100% | 2011-07-16 | 2011-07-26 |  |  | Forklift [48 h]; Grouting Set [48 h]; Shotcrete Set [48 h]; Other Skill Labour (Civil) [432 h]; Shortfirer [288 h]; Ganger [288 h]; Tunneller [288 h]; Electrician [288 h]; Mechanic [288 h]; Plant Operator [2448 h]; Welder [288 h]; Explosive Truck Driver [144 h]; Dump Truck [432 h]; Welder / Fitter [288 h]; Tower Crane [48 h]; Excavation - Hard [5256 m3]; Backhoe [48 h]; Backhoe with Breaker [48 h]; Loader [48 h]; Crane Lorry [48 h]; Truck Lorry [48 h]; Drilling Jumbo [216 h]; Cherry Picker [48 h]; Miner [288 h] | CCC | 821 | 2120 | C090 |
| 821016058 |  | Top heading drill & blast exc w temp support (Ch0+500 to 0+550) |  | 9d | 2011-07-27 A | 2011-08-09 A | 821016054 | 100% | 2011-07-26 | 2011-08-04 |  |  | Mechanic [288 h]; Plant Operator [2448 h]; Welder [288 h]; Explosive Truck Driver [144 h]; Dump Truck [432 h]; Welder / Fitter [288 h]; Tower Crane [48 h]; Miner [288 h]; Excavation - Hard [5256 m3]; Backhoe [48 h]; Backhoe with Breaker [48 h]; Loader [48 h]; Crane Lorry [48 h]; Truck Lorry [48 h]; Drilling Jumbo [216 h]; Cherry Picker [48 h]; Forklift [48 h]; Grouting Set [48 h]; Shotcrete Set [48 h]; Other Skill Labour (Civil) [432 h]; Shortfirer [288 h]; Ganger [288 h]; Tunneller [288 h]; Electrician [288 h] | CCC | 821 | 2120 | C090 |
| 821016059 |  | Top heading drill & blast exc w temp support (Ch0+550 to 0+600) |  | 9d | 2011-08-09 A | 2011-08-18 A | 821016058 | 100% | 2011-08-06 | 2011-08-16 |  |  | Cherry Picker [48 h]; Miner [288 h]; Forklift [48 h]; Grouting Set [48 h]; Shotcrete Set [48 h]; Other Skill Labour (Civil) [432 h]; Shortfirer [288 h]; Ganger [288 h]; Tunneller [288 h]; Electrician [288 h]; Mechanic [288 h]; Plant Operator [2448 h]; Welder [288 h]; Explosive Truck Driver [144 h]; Dump Truck [432 h]; Welder / Fitter [288 h]; Tower Crane [48 h]; Excavation - Hard [5256 m3]; Backhoe [48 h]; Backhoe with Breaker [48 h]; Loader [48 h]; Crane Lorry [48 h]; Truck Lorry [48 h]; Drilling Jumbo [216 h] | CCC | 821 | 2120 | C090 |
| 821016062 |  | Top heading drill & blast exc w temp support (Ch0+600 to 0+636) |  | 8d | 2011-08-18 A | 2011-08-25 A | 821016059 | 100% | 2011-08-17 | 2011-08-25 |  |  | Ganger [256 h]; Tunneller [256 h]; Electrician [256 h]; Mechanic [256 h]; Plant Operator [2176 h]; Welder [256 h]; Explosive Truck Driver [96 h]; Dump Truck [384 h]; Welder / Fitter [256 h]; Tower Crane [48 h]; Miner [256 h]; Excavation - Hard [4672 m3]; Backhoe [48 h]; Backhoe with Breaker [48 h]; Loader [48 h]; Crane Lorry [48 h]; Truck Lorry [48 h]; Drilling Jumbo [192 h]; Cherry Picker [48 h]; Forklift [48 h]; Grouting Set [48 h]; Shotcrete Set [48 h]; Other Skill Labour (Civil) [384 h]; Shortfirer [256 h] | CCC | 821 | 2120 | C090 |
| 821016780 |  | Pilot gallery drill & blast exc w temp support (Ch0+628.5 to 0+659.7) |  | 3d | 2011-08-25 A | 2011-08-27 A | 821016770 | 100% |  |  |  |  | Drilling Jumbo [72 h]; Backhoe [24 h]; Backhoe with Breaker [24 h]; Crane Lorry [24 h]; Cherry Picker [24 h]; Dump Truck [24 h]; Forklift [24 h]; Grouting Set [24 h]; Shotcrete Set [24 h]; Truck Lorry [24 h]; Loader [24 h]; Electrician [96 h]; Ganger [96 h]; Mechanic [96 h]; Miner [96 h]; Other Skill Labour (Civil) [144 h]; Shortfirer [96 h]; Plant Operator [816 h]; Excavation - Hard [2434 m3] | CCC | 821 | 2120 | C090 |
| 821016770 |  | Mobilization of plant, Removal of all utilities and Ramp removal |  | 2d | 2011-08-27 A | 2011-08-29 A | 821016062 | 100% | 2011-08-24 | 2011-08-25 |  |  | Plant Operator [16 h] | CCC | 821 | 2120 | C090 |
| 821013300 |  | Bottom bench drill & blast exc w temp support (Ch0+150 to 0+200) |  | 4d | 2011-09-05 A | 2011-09-09 A | 821013270 | 100% | 2011-09-05 | 2011-09-08 |  |  | Shortfirer [128 h]; Ganger [128 h]; Tunneller [128 h]; Electrician [128 h]; Mechanic [128 h]; Plant Operator [1088 h]; Welder [128 h]; Explosive Truck Driver [64 h]; Dump Truck [192 h]; Welder / Fitter [128 h]; Tower Crane [40 h]; Miner [128 h]; Excavation - Hard [2744 m3]; Backhoe [40 h]; Backhoe with Breaker [40 h]; Loader [40 h]; Crane Lorry [40 h]; Truck Lorry [40 h]; Drilling Jumbo [80 h]; Cherry Picker [40 h]; Forklift [40 h]; Grouting Set [40 h]; Shotcrete Set [40 h]; Other Skill Labour (Civil) [192 h] | CCC | 821 | 2120 | C090 |
| 821013310 |  | Bottom bench drill & blast exc w temp support (Ch0+200 to 0+250) |  | 4d | 2011-09-09 A | 2011-09-15 A | 821013300 | 100% | 2011-09-09 | 2011-09-14 |  |  | Truck Lorry [40 h]; Drilling Jumbo [80 h]; Cherry Picker [40 h]; Forklift [40 h]; Grouting Set [40 h]; Shotcrete Set [40 h]; Other Skill Labour (Civil) [192 h]; Shortfirer [128 h]; Ganger [128 h]; Tunneller [128 h]; Electrician [128 h]; Mechanic [128 h]; Plant Operator [1088 h]; Welder [128 h]; Explosive Truck Driver [64 h]; Dump Truck [192 h]; Welder / Fitter [128 h]; Tower Crane [40 h]; Miner [128 h]; Excavation - Hard [2744 m3]; Backhoe [40 h]; Backhoe with Breaker [40 h]; Loader [40 h]; Crane Lorry [40 h] | CCC | 821 | 2120 | C090 |
| 821016044 |  | Bottom bench drill & blast exc w temp support (Ch0+250 to 0+300) |  | 3d | 2011-09-15 A | 2011-09-20 A | 821013310 | 100% | 2011-09-15 | 2011-09-17 |  |  | Excavation - Hard [2058 m3]; Backhoe [24 h]; Backhoe with Breaker [24 h]; Loader [24 h]; Crane Lorry [24 h]; Truck Lorry [24 h]; Drilling Jumbo [80 h]; Cherry Picker [24 h]; Forklift [24 h]; Grouting Set [24 h]; Other Skill Labour (Civil) [144 h]; Shortfirer [96 h]; Ganger [96 h]; Tunneller [96 h]; Electrician [96 h]; Mechanic [96 h]; Plant Operator [816 h]; Welder [96 h]; Explosive Truck Driver [48 h]; Dump Truck [144 h]; Welder / Fitter [96 h]; Tower Crane [24 h]; Shotcrete Set [24 h]; Miner [96 h] | CCC | 821 | 2120 | C090 |
| 821016048 |  | Bottom bench drill & blast exc w temp support (Ch0+300 to 0+350) |  | 3d | 2011-09-20 A | 2011-09-24 A | 821016044 | 100% | 2011-09-20 | 2011-09-22 |  |  | Excavation - Hard [2058 m3]; Backhoe [24 h]; Backhoe with Breaker [24 h]; Loader [24 h]; Crane Lorry [24 h]; Truck Lorry [24 h]; Drilling Jumbo [80 h]; Miner [96 h]; Forklift [24 h]; Grouting Set [24 h]; Shotcrete Set [24 h]; Other Skill Labour (Civil) [144 h]; Shortfirer [96 h]; Ganger [96 h]; Tunneller [96 h]; Electrician [96 h]; Mechanic [96 h]; Plant Operator [816 h]; Welder [96 h]; Explosive Truck Driver [48 h]; Dump Truck [144 h]; Welder / Fitter [96 h]; Tower Crane [24 h]; Cherry Picker [24 h] | CCC | 821 | 2120 | C090 |
| 821016052 |  | Bottom bench drill & blast exc w temp support (Ch0+350 to 0+400) |  | 4d | 2011-09-24 A | 2011-09-28 A | 821016048 | 100% |  |  |  |  | Excavation - Hard [2832 m3]; Backhoe [40 h]; Backhoe with Breaker [40 h]; Loader [40 h]; Crane Lorry [40 h]; Truck Lorry [40 h]; Drilling Jumbo [80 h]; Cherry Picker [40 h]; Forklift [40 h]; Grouting Set [40 h]; Shotcrete Set [40 h]; Other Skill Labour (Civil) [192 h]; Shortfirer [128 h]; Ganger [128 h]; Tunneller [128 h]; Electrician [128 h]; Mechanic [128 h]; Plant Operator [1088 h]; Welder [128 h]; Explosive Truck Driver [64 h]; Dump Truck [192 h]; Welder / Fitter [128 h]; Tower Crane [40 h]; Miner [128 h] | CCC | 821 | 2120 | C090 |
| 821016056 |  | Bottom bench drill & blast exc w temp support (Ch0+400 to 0+450) |  | 4d | 2011-09-28 A | 2011-10-04 A | 821016052 | 100% | 2011-09-28 | 2011-10-03 |  |  | Ganger [128 h]; Tunneller [128 h]; Electrician [128 h]; Mechanic [128 h]; Plant Operator [1088 h]; Welder [128 h]; Explosive Truck Driver [64 h]; Dump Truck [192 h]; Welder / Fitter [128 h]; Tower Crane [40 h]; Drilling Jumbo [80 h]; Excavation - Hard [2832 m3]; Backhoe [40 h]; Backhoe with Breaker [40 h]; Loader [40 h]; Crane Lorry [40 h]; Truck Lorry [40 h]; Miner [128 h]; Cherry Picker [40 h]; Forklift [40 h]; Grouting Set [40 h]; Shotcrete Set [40 h]; Other Skill Labour (Civil) [192 h]; Shortfirer [128 h] | CCC | 821 | 2120 | C090 |
| 821016060 |  | Bottom bench drill & blast exc w temp support (Ch0+450 to 0+500) |  | 3d | 2011-10-04 A | 2011-10-10 A | 821016056 | 100% | 2011-10-04 | 2011-10-07 |  |  | Grouting Set [24 h]; Shotcrete Set [24 h]; Other Skill Labour (Civil) [144 h]; Shortfirer [96 h]; Ganger [96 h]; Tunneller [96 h]; Electrician [96 h]; Mechanic [96 h]; Plant Operator [816 h]; Welder [96 h]; Explosive Truck Driver [48 h]; Dump Truck [144 h]; Welder / Fitter [96 h]; Tower Crane [24 h]; Miner [96 h]; Excavation - Hard [2124 m3]; Backhoe [24 h]; Backhoe with Breaker [24 h]; Loader [24 h]; Crane Lorry [24 h]; Truck Lorry [24 h]; Drilling Jumbo [80 h]; Cherry Picker [24 h]; Forklift [24 h] | CCC | 821 | 2120 | C090 |
| 821016064 |  | Bottom bench drill & blast exc w temp support (Ch0+500 to 0+550) |  | 3d | 2011-10-10 A | 2011-10-13 A | 821016060 | 100% | 2011-10-12 | 2011-10-14 |  |  | Cherry Picker [24 h]; Forklift [24 h]; Grouting Set [24 h]; Shotcrete Set [24 h]; Other Skill Labour (Civil) [144 h]; Shortfirer [96 h]; Ganger [96 h]; Tunneller [96 h]; Electrician [96 h]; Mechanic [96 h]; Plant Operator [816 h]; Welder [96 h]; Explosive Truck Driver [48 h]; Dump Truck [144 h]; Welder / Fitter [96 h]; Tower Crane [24 h]; Miner [96 h]; Excavation - Hard [2124 m3]; Backhoe [24 h]; Backhoe with Breaker [24 h]; Loader [24 h]; Crane Lorry [24 h]; Truck Lorry [24 h]; Drilling Jumbo [80 h] | CCC | 821 | 2120 | C090 |
| 821016070 |  | Bottom bench drill & blast exc w temp support (Ch0+550 to 0+600) |  | 3d | 2011-10-13 A | 2011-10-17 A | 821016064 | 100% | 2011-10-13 | 2011-10-15 |  |  | Other Skill Labour (Civil) [144 h]; Shortfirer [96 h]; Ganger [96 h]; Tunneller [96 h]; Electrician [96 h]; Mechanic [96 h]; Welder [96 h]; Explosive Truck Driver [48 h]; Dump Truck [144 h]; Welder / Fitter [96 h]; Tower Crane [24 h]; Miner [96 h]; Excavation - Hard [2124 m3]; Backhoe [24 h]; Backhoe with Breaker [24 h]; Loader [24 h]; Crane Lorry [24 h]; Truck Lorry [24 h]; Drilling Jumbo [80 h]; Cherry Picker [24 h]; Forklift [24 h]; Grouting Set [24 h]; Shotcrete Set [24 h]; Plant Operator [816 h] | CCC | 821 | 2120 | C090 |
| 821012980 |  | Bottom bench drill & blast exc w temp support (Ch0+600 to 0+622.2) |  | 3d | 2011-10-17 A | 2011-10-19 A | 821016070 | 100% |  |  |  |  | Ganger [64 h]; Tunneller [64 h]; Electrician [64 h]; Mechanic [64 h]; Plant Operator [816 h]; Explosive Truck Driver [32 h]; Dump Truck [96 h]; Welder / Fitter [64 h]; Miner [64 h]; Excavation - Hard [933 m3]; Backhoe [16 h]; Backhoe with Breaker [16 h]; Loader [16 h]; Crane Lorry [16 h]; Truck Lorry [16 h]; Drilling Jumbo [48 h]; Cherry Picker [16 h]; Forklift [16 h]; Grouting Set [16 h]; Shotcrete Set [16 h]; Other Skill Labour (Civil) [96 h]; Shortfirer [64 h] | CCC | 821 | 2120 | C090 |
| 821017150 |  | Bottom bench drill & blast exc w temp support (Ch0+622.2 to 0+627.5) |  | 1d | 2011-10-24 A | 2011-10-24 A | 821012980 | 100% | 2011-10-17 | 2011-10-17 |  |  | Excavation - Hard [223 m3]; Backhoe [8 h]; Backhoe with Breaker [8 h]; Loader [8 h]; Crane Lorry [8 h]; Truck Lorry [8 h]; Drilling Jumbo [24 h]; Cherry Picker [8 h]; Forklift [8 h]; Grouting Set [8 h]; Shotcrete Set [8 h]; Other Skill Labour (Civil) [48 h]; Shortfirer [32 h]; Ganger [32 h]; Tunneller [32 h]; Electrician [32 h]; Mechanic [32 h]; Plant Operator [272 h]; Explosive Truck Driver [16 h]; Dump Truck [48 h]; Welder / Fitter [32 h]; Miner [32 h] | CCC | 821 | 2120 | C090 |
| 821017140 |  | Completion of Adit drill & blast exc w temp support | milestone | 0d | 2011-10-24 A | 2011-10-24 A | 821012980, 821017150 | 100% |  |  | mandatory finish 2011-10-19 |  |  | CCC | 821 | 2120 | C090 |

| ID | WBS | Activity | Duration | Start | Finish | Predecessors | Complete | Planned start | Planned finish | Constraint | Resources | Cost Centre | Contracts | Location | Phase of Works | Sequence |
| --- | --- | --- | --- | --- | --- | --- | --- | --- | --- | --- | --- | --- | --- | --- | --- | --- |
|  | 6 | **Drainage and Invert** |  | 2011-10-10 | 2013-02-09 |  |  |  |  |  |  |  |  |  |  |  |
| 821012790 |  | Adit drainage system & invert slab (Ch0+033 to 0+320) | 37d | 2011-10-10 A | 2013-02-09 A | 821012867, 821017140, 821012050 | 100% | 2011-10-12 | 2011-11-23 |  | Carpenter [864 h]; Concrete [1124 m3]; Rebar; Concretor [888 h]; Drainlayer [888 h]; Other Skill Labour (Civil) [1480 h] | CCC | 821 | 2120 | C090 |  |
| 821014730 |  | Adit drainage system & invert slab (Ch0+320 to 0+535) | 27d | 2012-01-03 A | 2012-02-01 A | 821012790 | 100% | 2012-01-03 | 2012-02-06 |  | Other Skill Labour (Civil) [1080 h]; Drainlayer [648 h]; Carpenter [560 h]; Concrete [842 m3]; Rebar; Concretor [648 h] | CCC | 821 | 2120 | C090 |  |
| 821012670 |  | Adit drainage system & invert slab (Ch0+535 to 0+627) | 12d | 2012-01-15 A | 2012-04-07 A | 821014730, 821012050 | 100% | 2012-01-16 | 2012-02-01 |  | Rebar; Carpenter [288 h]; Concretor [288 h]; Other Skill Labour (Civil) [480 h]; Drainlayer [288 h]; Concrete [360 m3] | CCC | 821 | 2120 | C090 | 2 |
|  | 2 | **Waterproofing** |  | 2012-02-24 | 2012-11-23 |  |  |  |  |  |  |  |  |  |  |  |
| 821011980 |  | Adit Vault Waterproofing & support beam (Ch0+548 to 0+526.3) | 19d | 2012-02-24 A | 2012-04-29 A | 821014730 FS-2d, 821011630 | 100% | 2012-02-24 | 2012-03-16 |  | Other Skill Labour (Civil) [760 h]; Concrete; Truck Lorry [112 h]; Cherry Picker [112 h]; Waterproof Platform [112 h]; Carpenter [448 h]; Concretor [152 h] | CCC | 821 | 2120 | C090 |  |
| 821017490 |  | Adit waterproofing Gantry erection | 12d | 2012-02-29 A | 2012-04-30 A | 821014730 FS+2d | 100% | 2012-02-29 | 2012-03-13 |  | Other Skill Labour (Civil) [576 h]; Crane Lorry [96 h] | CCC | 821 | 2120 | C090 | 1 |
| 821011990 |  | Adit Vault Waterproofing & support beam (Ch0+526.3 to 0+496) | 25d | 2012-04-30 A | 2012-05-22 A | 821011980, 821017490 | 100% | 2012-04-30 | 2012-05-29 |  | Concrete; Truck Lorry [280 h]; Cherry Picker [280 h]; Waterproof Platform [280 h]; Carpenter [600 h]; Concretor [200 h]; Other Skill Labour (Civil) [1000 h] | CCC | 821 | 2120 | C090 |  |
| 821016790 |  | Adit Vault Waterproofing & support beam (Ch0+496 to 0+346) | 41d | 2012-05-23 A | 2012-06-28 A | 821011990 | 100% | 2012-05-23 | 2012-07-11 |  | Carpenter [1024 h]; Concretor [328 h]; Other Skill Labour (Civil) [1640 h]; Concrete; Truck Lorry [280 h]; Cherry Picker [280 h]; Waterproof Platform [280 h] | CCC | 821 | 2120 | C090 |  |
| 821017500 |  | Adit Vault Waterproofing & support beam (Ch0+346 to 0+196) | 40d | 2012-06-27 A | 2012-10-20 A | 821016790 FS+18d, 821012060 | 100% | 2012-06-27 | 2012-08-13 | mandatory finish 2012-10-10 | Concretor [320 h]; Other Skill Labour (Civil) [1600 h]; Concrete; Truck Lorry [280 h]; Cherry Picker [280 h]; Waterproof Platform [280 h]; Carpenter [1024 h] | CCC | 821 | 2120 | C090 |  |
| 821017520 |  | Adit Vault Waterproofing & support beam (Ch0+548 to 0+601) | 18d | 2012-06-29 A | 2012-08-15 A | 821011990 FS+23d | 100% | 2012-06-29 | 2012-07-20 |  | Carpenter [432 h]; Concretor [144 h]; Other Skill Labour (Civil) [720 h]; Concrete; Truck Lorry [144 h]; Cherry Picker [144 h]; Waterproof Platform [144 h] | CCC | 821 | 2120 | C090 |  |
| 821012060 |  | Adit Vault Waterproofing & support beam (Ch0+601 to 0+627) | 6d | 2012-07-09 A | 2012-08-19 A | 821017520 | 100% | 2013-07-09 | 2013-07-15 |  | Truck Lorry [48 h]; Cherry Picker [48 h]; Waterproof Platform [48 h]; Carpenter [144 h]; Concretor [48 h]; Other Skill Labour (Civil) [240 h]; Concrete | CCC | 821 | 2120 | C090 | 2 |
| 821017510 |  | Adit Vault Waterproofing & support beam (Ch0+196 to 0+33) | 44d | 2012-10-20 A | 2012-11-23 A | 821017500 | 100% | 2012-10-10 | 2012-11-30 | mandatory finish 2012-12-10 | Concrete; Truck Lorry [280 h]; Cherry Picker [280 h]; Waterproof Platform [280 h]; Carpenter [1024 h]; Concretor [352 h]; Other Skill Labour (Civil) [1760 h] | CCC | 821 | 2120 | C090 |  |
|  | 3 | **Lining** |  | 2012-01-19 | 2013-04-08 |  |  |  |  |  |  |  |  |  |  |  |
| 821012910 |  | Erect Adit Vault formwork | 45d | 2012-01-19 A | 2012-03-31 A | 821010950, 821013810 | 100% | 2012-01-19 | 2012-03-14 |  | Other Skill Labour (Civil) [2160 h]; Crane Lorry [360 h] | CCC | 821 | 2120 | C090 | 1 |
| 821017420 |  | Stage 1: Adit vault formwork Transfer to Ch0+548 | 3d | 2012-04-06 A | 2012-04-08 A | 821012670, 821012910 | 100% | 2012-04-10 | 2012-04-12 |  | Other Skill Labour (Civil) [144 h]; Crane Lorry [24 h] | CCC | 821 | 2120 | C090 | 1 |
| 821012010 |  | Stage 1: Adit vault lining (Ch0+548 to 0+518) | 24d | 2012-04-10 A | 2012-05-10 A | 821017140, 821015250, 821015390, 821017420, 821011980 | 100% | 2012-04-10 | 2012-05-09 |  | Other Skill Labour (Civil) [816 h]; Lining Formwork Platform [136 h]; Concrete [470 m3]; Rebar; Crane Lorry [136 h]; Concrete Pump Set [136 h]; Steel Fixer [680 h]; Concretor [544 h] | CCC | 821 | 2120 | C090 | 1 |
| 821012015 |  | Stage 1: Adit vault lining (Ch0+518 to 0+325.5) | 70d | 2012-05-10 A | 2012-07-03 A | 821012010 | 100% | 2012-05-10 | 2012-08-01 |  | Crane Lorry [560 h]; Concrete Pump Set [560 h]; Steel Fixer [2240 h]; Concretor [1680 h]; Other Skill Labour (Civil) [2240 h]; Lining Formwork Platform [560 h]; Concrete [3011 m3]; Rebar | CCC | 821 | 2120 | C090 | 1 |
| 821017440 |  | Stage 3: Adit vault lining (Ch0+325.5 to 0+248) | 21d | 2012-07-04 A | 2012-10-11 A | 821017770 | 100% | 2012-07-04 | 2012-07-27 | mandatory finish 2012-10-10 | Concrete [1212 m3]; Rebar; Crane Lorry [232 h]; Concrete Pump Set [232 h]; Steel Fixer [672 h]; Concretor [504 h]; Other Skill Labour (Civil) [672 h]; Lining Formwork Platform [232 h] | CCC | 821 | 2120 | C090 |  |
| 821017760 |  | Stage 2: Adit Vault formwork Transfer to Ch0+627 | 3d | 2012-07-25 A | 2012-07-27 A | 821012015 | 100% | 2013-07-25 | 2013-07-27 |  | Other Skill Labour (Civil) [144 h]; Crane Lorry [24 h] | CCC | 821 | 2120 | C090 | 1 |
| 821012410 |  | Stage 2: Adit vault lining (Ch0+627 to 0+601) | 15d | 2012-08-06 A | 2012-09-03 A | 821017760, 821012060 FF | 100% | 2012-08-06 | 2012-08-22 |  | Concrete [407 m3]; Concrete Pump Set [72 h]; Steel Fixer [480 h]; Concretor [360 h]; Rebar; Other Skill Labour (Civil) [480 h]; Lining Formwork Platform [72 h]; Crane Lorry [72 h] | CCC | 821 | 2120 | C090 | 1 |
| 821012260 |  | Stage 2: Adit vault lining (Ch0+601 to 0+586) | 8d | 2012-09-03 A | 2012-09-11 A | 821012410 | 100% |  |  |  | Concrete [235 m3]; Rebar; Crane Lorry [32 h]; Concrete Pump Set [32 h]; Steel Fixer [256 h]; Concretor [192 h]; Other Skill Labour (Civil) [256 h]; Lining Formwork Platform [32 h] | CCC | 821 | 2120 | C090 |  |
| 821017430 |  | Stage 2: Adit vault lining (Ch0+586 to 0+548) | 22d | 2012-09-12 A | 2012-09-22 A | 821012260 | 100% | 2012-09-12 | 2012-10-09 |  | Crane Lorry [104 h]; Concrete Pump Set [104 h]; Steel Fixer [704 h]; Concretor [528 h]; Other Skill Labour (Civil) [704 h]; Lining Formwork Platform [104 h]; Concrete [595 m3]; Rebar | CCC | 821 | 2120 | C090 |  |
| 821017770 |  | Stage 3: Adit vault formwork Transfer inside Adit | 5d | 2012-09-22 A | 2012-09-27 A | 821017430 | 100% |  |  |  | Other Skill Labour (Civil) [144 h]; Crane Lorry [24 h] | CCC | 821 | 2120 | C090 | 1 |
| 821017450 |  | Stage 3: Adit vault lining (Ch0+248 to 0+148) | 27d | 2012-10-11 A | 2012-11-10 A | 821017440, 821017500 FF | 100% | 2012-10-11 | 2012-11-12 | mandatory finish 2012-11-10 | Steel Fixer [864 h]; Concretor [648 h]; Other Skill Labour (Civil) [864 h]; Lining Formwork Platform [232 h]; Concrete [1564 m3]; Crane Lorry [232 h]; Rebar; Concrete Pump Set [232 h] | CCC | 821 | 2120 | C090 |  |
| 821017460 |  | Stage 3: Adit vault lining (Ch0+148 to 0+33) | 30d | 2012-11-10 A | 2013-02-04 A | 821017450, 821017510 FF | 100% | 2012-11-10 | 2012-12-14 | mandatory finish 2012-12-15 | Concrete [1799 m3]; Rebar; Crane Lorry [232 h]; Concrete Pump Set [232 h]; Steel Fixer [992 h]; Concretor [744 h]; Other Skill Labour (Civil) [992 h]; Lining Formwork Platform [232 h] | CCC | 821 | 2120 | C090 |  |
| 821017790 |  | Adit vault formwork Preparation for balance of lining Hammerhead Interface | 3d | 2013-01-11 A | 2013-01-14 A | 821017780 | 100% |  |  | mandatory start 2013-01-28 | Lining Formwork Platform [24 h]; Other Skill Labour (Civil) [96 h]; Crane Lorry [24 h] | CCC | 821 | 2120 | C090 | 1 |
| 821017800 |  | Adit vault lining balance at Hammerhead Interface | 9d | 2013-01-15 A | 2013-03-20 A | 821017790 | 100% | 2013-01-15 | 2013-01-24 | mandatory finish 2013-03-16 | Lining Formwork Platform [96 h]; Crane Lorry [96 h]; Other Skill Labour (Civil) [288 h] | CCC | 821 | 2120 | C090 |  |
| 821017780 |  | Adit vault lining Interface with Portal | 3d | 2013-02-05 A | 2013-02-07 A | 821017460 | 100% |  |  | mandatory start 2013-02-01 | Crane Lorry [24 h]; Other Skill Labour (Civil) [96 h]; Lining Formwork Platform [24 h] | CCC | 821 | 2120 | C090 |  |
| 821012620 |  | Dismantle formwork | 12d | 2013-03-21 A | 2013-04-08 A | 821017800 | 100% |  |  |  | Crane Lorry [96 h]; Other Skill Labour (Civil) [576 h] | CCC | 821 | 2120 | C090 |  |

| ID | WBS | Activity | Duration | Start | Finish | Predecessors | Complete | Planned start | Planned finish | Constraint | Resources | Cost Centre | Sequence | Contracts | Location | Phase of Works |
| --- | --- | --- | --- | --- | --- | --- | --- | --- | --- | --- | --- | --- | --- | --- | --- | --- |
|  | 4 | **U-Shape Partition Wall (Central)** |  | 2012-08-20 | 2013-06-11 |  |  |  |  |  |  |  |  |  |  |  |
| 821012020 |  | Stage 1: Adit U-Shape formwork erection | 12d | 2012-08-20 A | 2012-09-08 A | 821017570, 821012015 SS+64d, 821010950 | 100% | 2012-08-20 | 2012-09-01 | mandatory finish 2012-09-08 | Crane Lorry [96 h]; Other Skill Labour (Civil) [576 h] | CCC | 2 | 821 | 2120 | C090 |
| 821017840 |  | Stage 2: Adit U-Shape formwork erection | 12d | 2012-09-08 A | 2012-09-15 A | 821012020 | 100% | 2012-09-08 | 2012-09-21 |  | Crane Lorry [96 h]; Other Skill Labour (Civil) [576 h] | CCC | 2 | 821 | 2120 | C090 |
| 821012420 |  | U-Shape partition wall (Ch0+605 to 0+456) | 50d | 2012-10-03 A | 2012-12-16 A |  | 100% | 2012-10-03 | 2012-11-30 | mandatory finish 2012-12-08 | Rebar; Other Skill Labour (Civil) [1152 h]; Concrete [995 m3]; Crane Lorry [336 h]; Concrete Pump Set [336 h]; Steel Fixer [1152 h]; Concretor [864 h] | CCC | 2 | 821 | 2120 | C090 |
| 821012270 |  | U-Shape partition wall (Ch0+426 to 0+283) | 48d | 2012-12-22 A | 2013-02-14 A | 821017440 FF+10d, 821012420 | 100% | 2012-12-22 | 2013-02-22 | mandatory finish 2013-02-20 | Crane Lorry [296 h]; Concrete [955 m3]; Rebar; Concrete Pump Set [264 h]; Steel Fixer [1056 h]; Concretor [792 h]; Other Skill Labour (Civil) [1056 h] | CCC |  | 821 | 2120 | C090 |
| 821017470 |  | U-Shape partition wall (Ch0+253 to 0+143) | 37d | 2013-03-19 A | 2013-05-07 A | 821012270 | 100% | 2013-03-19 | 2013-05-06 | mandatory finish 2013-05-18 | Concrete [735 m3]; Rebar; Concrete Pump Set [440 h]; Steel Fixer [888 h]; Concretor [592 h]; Other Skill Labour (Civil) [888 h]; Crane Lorry [296 h] | CCC |  | 821 | 2120 | C090 |
| 821012280 |  | U-Shape partition wall (Ch0+143 to 0+033) | 35d | 2013-05-08 A | 2013-06-11 A | 821012620 FF, 821017470, 821017460 FF | 100% | 2013-05-08 | 2013-06-19 |  | Concrete [735 m3]; Concrete Pump Set [168 h]; Concretor [592 h]; Other Skill Labour (Civil) [888 h]; Steel Fixer [888 h]; Crane Lorry [168 h]; Rebar | CCC |  | 821 | 2120 | C090 |
|  | 11 | **Partition Slabs (Two side)** |  | 2012-11-05 | 2013-09-22 |  |  |  |  |  |  |  |  |  |  |  |
| 821016520 |  | Partition slabs (Ch0+565 to 0+456) | 36d | 2012-11-05 A | 2013-06-28 A | 821012420 SS+22d | 100% | 2012-11-05 | 2012-12-15 | mandatory start 2012-09-10 | Concrete [583 m3]; Rebar; Crane Lorry [240 h]; Concrete Pump Set [240 h]; Steel Fixer [864 h]; Concretor [576 h]; Other Skill Labour (Civil) [864 h] | CCC |  | 821 | 2120 | C090 |
| 821017850 |  | Partition slabs (Ch0+565 to 0+605) | 16d | 2013-01-04 A | 2013-09-22 A | 821017750 SS, 821016540 | 100% | 2013-01-04 | 2013-01-22 | mandatory finish 2013-07-20 | Concrete [214 m3]; Rebar; Crane Lorry [128 h]; Concrete Pump Set [128 h]; Steel Fixer [432 h]; Concretor [256 h]; Other Skill Labour (Civil) [432 h] | CCC |  | 821 | 2120 | C090 |
| 821016530 |  | Partition slabs (Ch0+426 to 0+283) | 48d | 2013-01-14 A | 2013-03-28 A | 821016520 | 100% | 2013-01-14 | 2013-03-13 | mandatory finish 2013-03-18 | Concrete [765 m3]; Rebar; Crane Lorry [208 h]; Concrete Pump Set [208 h]; Steel Fixer [1056 h]; Concretor [832 h]; Other Skill Labour (Civil) [1056 h] | CCC |  | 821 | 2120 | C090 |
| 821017690 |  | Partition slabs (Ch0+253 to 0+143) | 37d | 2013-04-02 A | 2013-05-24 A | 821016530 FS+1d | 100% | 2013-04-02 | 2013-05-16 |  | Concrete [588 m3]; Rebar [26 T]; Crane Lorry [296 h]; Concrete Pump Set [296 h]; Steel Fixer [888 h]; Concretor [592 h]; Other Skill Labour (Civil) [888 h] | CCC |  | 821 | 2120 | C090 |
| 821016540 |  | Partition slabs (Ch0+143 to 0+033) | 37d | 2013-05-25 A | 2013-07-10 A | 821012280 FF, 821017690 | 100% | 2013-05-25 | 2013-07-09 | mandatory finish 2013-07-02 | Crane Lorry [208 h]; Concrete Pump Set [208 h]; Steel Fixer [888 h]; Concretor [504 h]; Other Skill Labour (Civil) [888 h]; Concrete [588 m3]; Rebar | CCC |  | 821 | 2120 | C090 |
|  | 1 | **Upper Partition Wall (Central)** |  | 2012-11-01 | 2013-08-14 |  |  |  |  |  |  |  |  |  |  |  |
| 821017480 |  | Adit Upper Partition Wall formwork erection | 20d | 2012-11-01 A | 2012-11-12 A | 821017840 FS+1d | 100% | 2012-11-19 | 2012-12-11 |  | Crane Lorry [192 h]; Other Skill Labour (Civil) [960 h] | CCC | 2 | 821 | 2120 | C090 |
| 821012450 |  | Upper Partition Wall (Ch0+545 to 0+456) | 36d | 2012-11-13 A | 2013-05-14 A | 821016520 SS, 821017480 FS+1d | 100% | 2012-11-13 | 2012-12-24 |  | Concrete Pump Set [144 h]; Steel Fixer [576 h]; Concretor [432 h]; Other Skill Labour (Civil) [576 h]; Concrete [111 m3]; Rebar; Crane Lorry [144 h] | CCC |  | 821 | 2120 | C090 |
| 821012455 |  | Upper Partition Wall (Ch0+426 to 0+283) | 48d | 2013-01-30 A | 2013-03-13 A | 821012450 | 100% | 2013-01-16 | 2013-03-15 | mandatory finish 2013-03-26 | Other Skill Labour (Civil) [768 h]; Concrete [178 m3]; Rebar; Crane Lorry [384 h]; Concrete Pump Set [384 h]; Steel Fixer [768 h]; Concretor [768 h] | CCC |  | 821 | 2120 | C090 |
| 821017700 |  | Upper Partition Wall (Ch0+253 to 0+143) | 37d | 2013-04-05 A | 2013-05-28 A | 821012455 | 100% | 2013-04-05 | 2013-05-20 | mandatory finish 2013-05-16 | Steel Fixer [592 h]; Concretor [696 h]; Other Skill Labour (Civil) [592 h]; Concrete [137 m3]; Rebar; Crane Lorry [208 h]; Concrete Pump Set [208 h] | CCC |  | 821 | 2120 | C090 |
| 821012465 |  | Upper Partition Wall (Ch0+143 to 0+033) | 37d | 2013-05-29 A | 2013-07-09 A | 821017700 FS+1d, 821016540 FF | 100% | 2013-05-29 | 2013-07-12 | mandatory finish 2013-07-04 | Concrete [137 m3]; Rebar; Crane Lorry [296 h]; Concrete Pump Set [296 h]; Steel Fixer [592 h]; Other Skill Labour (Civil) [592 h]; Concretor [592 h] | CCC |  | 821 | 2120 | C090 |
| 821017940 |  | Upper Partition Wall (Ch0+545 to 0+605) | 16d | 2013-07-16 A | 2013-08-14 A | 821012465 | 100% | 2013-07-16 | 2013-08-02 |  | Concrete Pump Set [128 h]; Steel Fixer [256 h]; Concretor [256 h]; Other Skill Labour (Civil) [256 h]; Concrete [95 m3]; Rebar; Crane Lorry [128 h] | CCC |  | 821 | 2120 | C090 |
|  | 8 | **U-Shape Bays Type 2 (I.S. Bay 1- 3, including Partition slabs & Upper partition wall)** |  | 2012-12-17 | 2013-04-20 |  |  |  |  |  |  |  |  |  |  |  |
| 821017740 |  | I.S. Bay 1 (Ch0+456 to 0+426) | 10d | 2012-12-17 A | 2013-04-20 A | 821017750 | 100% | 2012-12-17 | 2012-12-29 | mandatory finish 2013-05-18 | Concretor [288 h]; Other Skill Labour (Civil) [384 h]; Concrete [557 m3]; Rebar; Crane Lorry [96 h]; Concrete Pump Set [96 h]; Steel Fixer [384 h] | CCC |  | 821 | 2120 | C090 |
| 821017750 |  | I.S. Bay 2 (Ch0+283 to 0+253) | 10d | 2013-03-28 A | 2013-04-11 A | 821012280 FS+9d | 100% | 2013-03-28 | 2013-04-12 | mandatory finish 2013-06-29 | Crane Lorry [96 h]; Other Skill Labour (Civil) [384 h]; Concrete [557 m3]; Concrete Pump Set [96 h]; Concretor [384 h]; Carpenter [288 h] | CCC | 2 | 821 | 2120 | C090 |
|  | 5 | **Walkway** |  | 2013-09-20 | 2014-01-14 |  |  |  |  |  |  |  |  |  |  |  |
| 821012290 |  | Footpath & vehicular access (Ch0+400 to 0+627) | 8d | 2013-09-20 A | 2014-01-14 A | 821012040 | 100% | 2013-09-26 | 2013-10-05 |  | Concrete [186 m3]; Other Skill Labour (Civil) [384 h]; Concretor [384 h]; Carpenter [288 h]; Concrete Pump Set [48 h] | CCC |  | 821 | 2120 | C090 |
| 821012040 |  | Footpath & vehicular access (Ch0+33 to 0+400) | 12d | 2013-10-02 A | 2014-01-14 A | 821017750 SS, 821012465 | 100% | 2013-10-02 | 2013-10-16 | mandatory start 2013-10-17 | Concrete; Other Skill Labour (Civil); Concretor; Concrete Pump Set; Carpenter | CCC |  | 821 | 2120 | C090 |

| ID | WBS | Activity | Type | Duration | Start | Finish | Predecessors | Complete | Planned start | Planned finish | Constraint | Calendar | Resources | Cost Centre | Sequence | Contracts | Location | Phase of Works | Sub-location |
| --- | --- | --- | --- | --- | --- | --- | --- | --- | --- | --- | --- | --- | --- | --- | --- | --- | --- | --- | --- |
|  | 7 | **Kwai Chung Adit - Hammer Head** |  |  | 2011-10-20 | 2013-11-16 |  |  |  |  |  |  |  |  |  |  |  |  |  |
| 821016500 |  | Drill & blast exc with temp support (Hammer Head enlarger section) |  | 3d | 2011-10-20 A | 2011-10-25 A | 821012230, 821017140 FS-4d | 100% | 2011-10-20 | 2011-10-22 |  |  | Backhoe [24 h]; Backhoe with Breaker [24 h]; Drilling Jumbo [72 h]; Truck Lorry [24 h]; Crane Lorry [24 h]; Loader [24 h]; Forklift [24 h]; Cherry Picker [24 h]; Plant Operator [816 h]; Mechanic [96 h]; Electrician [96 h]; Shortfirer [96 h]; Ganger [96 h]; Welder [96 h]; Miner [96 h]; Welder / Fitter [96 h]; Tunneller [96 h]; Grouting Set [24 h]; Shotcrete Set [24 h]; Other Skill Labour (Civil) [144 h]; Excavation - Hard [600 m3]; Explosive Truck Driver [48 h]; Dump Truck [144 h] | CCC | 1 | 821 | 2120 | C090 |  |
| 821012300 |  | Drill & blast exc with temp support (Hammer Head) |  | 5d | 2011-10-26 A | 2011-10-31 A | 821016500 | 100% |  |  |  |  | Explosive Truck Driver [80 h]; Plant Operator [1360 h]; Welder / Fitter [160 h]; Dump Truck [240 h]; Backhoe [40 h]; Backhoe with Breaker [40 h]; Tunneller [160 h]; Other Skill Labour (Civil) [240 h]; Drilling Jumbo [120 h]; Truck Lorry [40 h]; Crane Lorry [40 h]; Loader [40 h]; Cherry Picker [40 h]; Shotcrete Set [40 h]; Grouting Set [40 h]; Mechanic [160 h]; Electrician [160 h]; Shortfirer [160 h]; Ganger [160 h]; Welder [160 h]; Miner [160 h]; Excavation - Hard [1952 m3] | CCC | 1 | 821 | 2120 | C090 |  |
|  | 1 | **Enlarged Hammer Head** |  |  | 2012-12-03 | 2013-03-20 |  |  |  |  |  |  |  |  |  |  |  |  |  |
| 821015890 |  | Side walls prior to Adit lining |  | 11d | 2012-12-03 A | 2012-12-14 A | 821012300, 821012015 SS+59d, 821011575 | 100% |  |  | mandatory start 2012-08-27 |  | Concrete [90 m3]; Other Skill Labour (Civil) [352 h]; Carpenter [176 h]; Concretor [176 h] | CCC | 1 | 821 | 2120 | C090 |  |
| 821012400 |  | Internal structures and Vault |  | 95d | 2013-02-16 A | 2013-03-20 A | 821015890 FS+45d | 100% | 2013-02-16 | 2013-06-14 |  |  | Other Skill Labour (Civil) [3040 h]; Concretor [1520 h]; Carpenter [1520 h]; Concrete [100 m3] | CCC |  | 821 | 2120 | C090 |  |
|  | 2 | **Reduced Hammer Head** |  |  | 2013-05-22 | 2013-11-16 |  |  |  |  |  |  |  |  |  |  |  |  |  |
| 821012380 |  | Balance of works: Internal structures & Lining at By-pass |  | 24d | 2013-05-22 A | 2013-11-16 A | 821012370, 821012280 | 100% | 2013-05-22 | 2013-06-19 | mandatory start 2013-03-13 |  | Concrete [30 m3]; Other Skill Labour (Civil) [768 h]; Concretor [384 h]; Carpenter [384 h] | CCC |  | 821 | 2120 | C090 |  |
| 821012370 |  | Side lining stage 1 |  | 24d | 2013-08-05 A | 2013-10-12 A | 821017460, 821012400 FS+33d, 821015370 | 100% | 2013-08-05 | 2013-08-31 | mandatory start 2013-02-09 |  | Concrete [50 m3]; Other Skill Labour (Civil) [800 h]; Carpenter [384 h]; Concretor [384 h] | CCC |  | 821 | 2120 | C090 |  |
|  | 8 | **Kwai Chung Adit - Pit** |  |  | 2012-02-20 | 2012-07-07 |  |  |  |  |  |  |  |  |  |  |  |  |  |
| 821012570 |  | Drill & blast exc with temp support (Pit) |  | 12d | 2012-02-20 A | 2012-03-22 A | 821012300, 821011575 SS | 100% | 2012-02-20 | 2012-03-03 |  |  | Cherry Picker [96 h]; Forklift [96 h]; Grouting Set [96 h]; Shotcrete Set [96 h]; Truck Lorry [96 h]; Loader [96 h]; Electrician [384 h]; Mechanic [384 h]; Ganger [384 h]; Miner [96 h]; Other Skill Labour (Civil) [384 h]; Shortfirer [384 h]; Plant Operator [96 h]; Excavation - Hard [1136 m3]; Explosive Truck Driver [192 h]; Welder / Fitter [64 h]; Dump Truck [576 h]; Drilling Jumbo [288 h]; Backhoe [96 h]; Backhoe with Breaker [96 h]; Crane Lorry [96 h] | CCC |  | 821 | 2120 | C090 |  |
| 821012590 |  | Sump pit concreting works |  | 49d | 2012-04-10 A | 2012-06-30 A | 821012570, 821011575 SS+12d | 100% | 2012-04-10 | 2012-06-07 |  |  | Concrete [150 m3]; Rebar; Other Skill Labour (Civil) [400 h]; Steel Fixer [400 h]; Concretor [800 h] | CCC |  | 821 | 2120 | C090 |  |
| 821017560 |  | Sump pit backfilling |  | 6d | 2012-07-02 A | 2012-07-07 A | 821012590 | 100% | 2012-07-07 | 2012-07-13 |  |  | Other Skill Labour (Civil) [240 h]; Backhoe [48 h]; Plant Operator [48 h] | CCC |  | 821 | 2120 | C090 |  |
| 821017570 |  | Sump pit blinding concrete on top of backfill |  | 1d | 2012-07-07 A | 2012-07-07 A | 821017560 | 100% |  |  |  |  | Concrete [10 m3]; Other Skill Labour (Civil) [16 h]; Concretor [16 h] | CCC |  | 821 | 2120 | C090 |  |
|  | 9 | **Adit - By-Pass** |  |  | 2013-05-22 | 2014-08-30 |  |  |  |  |  |  |  |  |  |  |  |  |  |
| 821016314 |  | Reinstatement of temporary by-pass tunnel (North) |  | 17d | 2013-05-22 A | 2014-01-30 A | 821017410 SS+4d | 100% | 2013-05-22 | 2013-06-10 |  |  | Other Skill Labour (Civil) [1360 h]; Backhoe [240 h]; Plant Operator [240 h] | CCB |  | 821 | 2110 | C090 | TUNN |
| 821017410 |  | North Partition wall closing (Ch134644.7 - 134578.8) |  | 12d | 2014-02-10 A | 2014-03-01 A | 821012465 SS+36d | 100% | 2014-02-10 | 2014-02-22 |  |  | Concrete [90 m3]; Crane Lorry [96 h]; Concrete Pump Set [96 h]; Carpenter [192 h]; Concretor [288 h]; Other Skill Labour (Civil) [288 h]; Steel Fixer [192 h] | CCB |  | 821 | 2110 | C090 | TUNN |
| 821016324 |  | Reinstatement of temporary by-pass tunnel (South) |  | 12d | 2014-06-23 A | 2014-08-07 A | 821012465 | 100% | 2014-06-23 | 2014-07-07 | mandatory start 2014-07-15 |  | Backhoe [192 h]; Plant Operator [192 h]; Other Skill Labour (Civil) [960 h] | CCB |  | 821 | 2110 | C090 | TUNS |
| 821017250 |  | South Partition wall closing (Ch134644.7 - 134670.7) |  | 12d | 2014-08-08 A | 2014-08-30 A | 821016324 | 100% | 2014-08-08 | 2014-08-21 |  |  | Concretor [288 h]; Rebar; Concrete Pump Set [96 h]; Crane Lorry [96 h]; Carpenter [192 h]; Concrete [92 m3]; Other Skill Labour (Civil) [288 h]; Steel Fixer [192 h] | CCB |  | 821 | 2110 | C090 | TUNS |
|  | 12 | **Kwai Chung Vehicular Access Adit - All Rooms** |  |  | 2013-12-02 | 2014-04-26 |  |  |  |  |  |  |  |  |  |  |  |  |  |
| 821012310 |  | Construction of Plant Room & Deg 1 Work |  | 36d | 2013-12-02 A | 2014-01-23 A | 821011570 | 100% | 2013-12-02 | 2014-01-15 |  |  | Concretor [2880 h]; Concrete [1890 m3]; Rebar [12.3 T]; Other Skill Labour (Civil) [576 h]; Steel Fixer [576 h]; Carpenter [576 h] | CCC |  | 821 | 2120 | C100 |  |
| 821012330 |  | Completion of Deg 2 Work of All rooms |  | 36d | 2014-02-24 A | 2014-03-29 A | 8210KD100 FS+10d, 821011570 | 100% | 2014-02-24 | 2014-04-07 | mandatory start 2014-02-05 |  | Other Skill Labour (Civil) [576 h]; Other Skill Labour (BS / E&M) [576 h] | CCC |  | 821 | 2120 | C100 |  |
| 821012340 |  | Completion of Deg 3 Work of All rooms |  | 10d | 2014-04-14 A | 2014-04-26 A | 8210KD110 FS+5d, 821015860 | 100% | 2014-04-14 | 2014-04-28 |  |  | Other Skill Labour (Civil) [160 h]; Other Skill Labour (BS / E&M) [160 h] | CCC |  | 821 | 2120 | C100 |  |
|  | B | **Cost Centre B - Shek Yam to Mei Lai Road Tunnel** |  |  | 2010-07-19 | 2015-05-10 |  |  |  |  |  |  |  |  |  |  |  |  |  |
|  | 1 | **Milestones** |  |  | 2010-08-29 | 2015-05-10 |  |  |  |  |  |  |  |  |  |  |  |  |  |
|  | 1 | **Milestone No.** |  |  | 2010-08-29 | 2015-05-10 |  |  |  |  |  |  |  |  |  |  |  |  |  |
| 8210MSB01 |  | B1 (34/10, 29 Aug '10) - Drilling jumbo order placed | milestone | 0d | 2010-08-29 A | 2010-08-29 A | 8210KD010 FS+41d | 100% |  |  | finish on or after 2010-08-29 | 2 - 821 Calendar Day |  | CCB |  | 821 | 2110 | C090 |  |
| 8210MSB02 |  | B2 (08/11, 27 Feb '11) - Submit instrumentation monitoring report | milestone | 0d | 2011-02-14 A | 2011-02-14 A | 8210KD010 FS+223d, 821010740 | 100% |  |  | finish on or after 2011-02-27 | 2 - 821 Calendar Day |  | CCB |  | 821 | 2110 | C090 |  |
| 8210MSB03 |  | B3 (44/11, 6 Nov '11) - Complete 5% of excavation & temp support of main tunnel | milestone | 0d | 2011-11-30 A | 2011-11-30 A | 821011310 FS-42d, 8210KD010 FS+406d, 821011420 | 100% | 2012-11-30 | 2012-11-30 | finish on or after 2011-11-06 | 2 - 821 Calendar Day |  | CCB |  | 821 | 2110 | C090 |  |
| 8210MSB04 |  | B4 (04/12, 29 Jan '12) - Complete 20% of excavation & temp support of main tunnel | milestone | 0d | 2012-01-29 A | 2012-01-29 A | 821011310, 8210KD010 FS+496d, 821011440 FS-17d | 100% |  |  | finish on or after 2012-01-29 | 2 - 821 Calendar Day |  | CCB |  | 821 | 2110 | C090 |  |
| 8210MSB05 |  | B5 (12/12, 25 Mar '12) - Complete 35% of excavation & temp support of main tunnel | milestone | 0d | 2012-03-06 A | 2012-03-06 A | 8210KD010 FS+587d, 821011535, 821011430 FS-23d, 821012470 FS-28d | 100% |  |  | finish on or after 2012-03-25 | 2 - 821 Calendar Day |  | CCB |  | 821 | 2110 | C090 |  |
| 8210MSB06 |  | B6 (23/12, 10 Jun '12) - Complete 50% of excavation & temp support of main tunnel | milestone | 0d | 2012-05-26 A | 2012-05-26 A | 821012480 FS-44d, 821011450 FS-15d, 821012470, 8210KD010 FS+678d | 100% |  |  | finish on or after 2012-06-10 | 2 - 821 Calendar Day |  | CCB |  | 821 | 2110 | C090 |  |
| 8210MSB07 |  | B7 (37/12, 16 Sep '12) - Complete 80% of excavation & temp support of main tunnel | milestone | 0d | 2012-09-16 A | 2012-09-16 A | 8210KD010 FS+769d, 821011610 FS-23d, 821016114, 821011535 | 100% |  |  | finish on or after 2012-09-16 | 2 - 821 Calendar Day |  | CCB |  | 821 | 2110 | C090 |  |
| 8210MSB09 |  | B9 (13/13, 31 Mar '13) - Complete 60% of tunnel drainage & invert slab | milestone | 0d | 2012-11-10 A | 2012-11-10 A | 821013480, 821012600, 8210KD010 FS+986d | 100% |  |  | finish on or after 2013-03-31 | 2 - 821 Calendar Day |  | CCB |  | 821 | 2110 | C090 |  |
| 8210MSB08 |  | B8 (47/12, 25 Nov '12) - Complete 40% of tunnel lining | milestone | 0d | 2013-02-08 A | 2013-02-08 A | 821016950, 8210KD010 FS+860d | 100% |  |  | finish on or after 2012-11-25 | 2 - 821 Calendar Day |  | CCB |  | 821 | 2110 | C090 |  |
| 8210MSB11a |  | B11a (52/13, 24 Nov '13) - Complete Up Track tunnel drainage and invert slab (Excl. U/T bored tunnel from 820 interface) | milestone | 0d | 2013-12-29 A | 2013-12-29 A | 8210KD010 FS+1224d, 821016094 | 100% |  |  | finish on or after 2013-12-29 | 2 - 821 Calendar Day |  | CCB |  | 821 | 2110 | C090 |  |
| 8210MSB10 |  | B10 (33/13, 18 Aug '13) - Complete inst. of cable brackets supplied by C846(Excl. U/T Tunnel from Bifurcation to 820 IF) | milestone | 0d | 2013-12-31 A | 2013-12-31 A | 821013020, 8210KD010 FS+1077d, 821017860 | 100% | 2013-08-18 | 2013-08-18 | mandatory finish 2013-08-18 | 2 - 821 Calendar Day |  | CCB |  | 821 | 2110 | C090 |  |
| 8210MSB11b |  | B11b (21/14, 25 May '14) - Complete Up Track tunnel drainage and invert slab (U/T bored tunnel from 820 interface) | milestone | 0d | 2014-04-18 A | 2014-04-18 A |  | 100% |  |  | finish on or after 2014-04-18 | 2 - 821 Calendar Day |  | CCB |  | 821 | 2110 | C090 |  |
| 8210MSB12 |  | B12 (30/14, 27 Jul '14) - Submit instrumentation monitoring report | milestone | 0d | 2014-07-27 A | 2014-07-27 A | 8210KD010 FS+1469d | 100% |  |  | finish on or after 2014-07-27 | 2 - 821 Calendar Day |  | CCB |  | 821 | 2110 | C090 |  |
| 8210MSB13 |  | B13 (19/15, 10 May '15) - Complete all works in this Cost Centre | milestone | 0d | 2015-05-10 A | 2015-05-10 A | 8210KD010 FS+1756d, 821011400, 821011320 | 100% |  |  | finish on or after 2015-05-10 | 2 - 821 Calendar Day |  | CCB |  | 821 | 2110 | C090 |  |

| ID | WBS | Activity | Duration | Start | Finish | Predecessors | Complete | Planned start | Planned finish | Calendar | Cost Centre | Contracts | Location | Phase of Works | Person in Charge | Sequence |
| --- | --- | --- | --- | --- | --- | --- | --- | --- | --- | --- | --- | --- | --- | --- | --- | --- |
|  | 3 | **Design Submission** |  | 2010-08-10 | 2014-01-10 |  |  |  |  |  |  |  |  |  |  |  |
|  | 1 | **Alignment with TBM Tunnel** |  | 2010-08-10 | 2012-05-29 |  |  |  |  |  |  |  |  |  |  |  |
| 821012920 |  | Submit AIP (Part I) Design for approval | 48d | 2010-08-10 A | 2010-10-18 A | 8210KD010 FS+150d | 100% | 2010-08-10 | 2010-10-06 |  | CCB | 821 | 2110 | C010 | ARUP |  |
| 821013000 |  | Approve AIP (Part I) | 24d | 2010-11-26 A | 2010-12-07 A | 821012920 | 100% | 2010-11-26 | 2010-12-23 |  | CCB | 821 | 2110 | C010 | ARUP |  |
| 821013070 |  | Submit AIP (Part II) for approval | 33d | 2010-12-08 A | 2011-04-04 A | 821012920, 821013000 FF+6d | 100% | 2010-12-08 | 2011-01-18 |  | CCB | 821 | 2110 | C010 | ARUP |  |
| 821013080 |  | Comment AIP (Part II) | 24d | 2011-04-04 A | 2011-04-30 A | 821013070 | 100% | 2011-03-21 | 2011-04-18 |  | CCB | 821 | 2110 | C010 | ARUP |  |
| 821013085 |  | Resubmit AIP (Part II) | 18d | 2011-04-30 A | 2011-05-25 A | 821013080 | 100% | 2011-04-30 | 2011-05-23 |  | CCB | 821 | 2110 | C010 | ARUP |  |
| 821013087 |  | Approved AIP (Part II) | 24d | 2011-05-25 A | 2011-08-03 A | 821013085 | 100% | 2011-05-25 | 2011-06-22 |  | CCB | 821 | 2110 | C010 | ARUP |  |
| 821015400 |  | Issue drawings for construction | 6d | 2011-08-04 A | 2012-05-29 A | 821013087 | 100% | 2011-08-03 | 2011-08-09 |  | CCB | 821 | 2110 | C010 |  |  |
|  | 2 | **Twin Track Tunnel - Temporary Support** |  | 2010-12-10 | 2011-11-16 |  |  |  |  |  |  |  |  |  |  |  |
| 821013520 |  | Prepare & Submit Design Report | 48d | 2010-12-10 A | 2011-03-10 A | 8210KD010 FS+88d | 100% | 2010-12-10 | 2011-02-10 |  | CCB | 821 | 2110 | C010 | ARUP | 1 |
| 821013890 |  | RDO/GEO consultation and MTRC review | 24d | 2011-03-11 A | 2011-05-20 A | 821013520 | 100% | 2011-03-11 | 2011-04-08 |  | CCB | 821 | 2110 | C010 | ARUP | 1 |
| 821013960 |  | Resubmit Design Report | 18d | 2011-05-20 A | 2011-11-11 A | 821015400, 821013890 | 100% | 2011-05-20 | 2011-06-10 |  | CCB | 821 | 2110 | C010 | ARUP | 1 |
| 821013095 |  | RDO/GEO consultation & MTRC Approve | 24d | 2011-06-16 A | 2011-11-16 A | 821013960, 821013890 | 100% | 2011-06-16 | 2011-07-14 |  | CCB | 821 | 2110 | C010 |  | 1 |
|  | 3 | **Twin Track Tunnel - Permanent Support** |  | 2010-12-23 | 2013-03-16 |  |  |  |  |  |  |  |  |  |  |  |
| 821013900 |  | Submit AIP Design for approval | 36d | 2010-12-23 A | 2011-06-17 A | 821013070 SS+16d | 100% | 2010-12-23 | 2011-02-09 |  | CCB | 821 | 2110 | C010 | ARUP | 1 |
| 821013910 |  | Approve AIP | 24d | 2011-06-17 A | 2011-09-30 A | 821013900 | 100% | 2011-06-17 | 2011-07-15 |  | CCB | 821 | 2110 | C010 | ARUP | 1 |
| 821013920 |  | Submit DDA for approval | 42d | 2011-09-30 A | 2012-03-29 A | 821013900, 821013910 FF+6d | 100% | 2011-09-30 | 2011-11-19 |  | CCB | 821 | 2110 | C010 | ARUP | 1 |
| 821013930 |  | RDO/GEO consultation and MTRC review | 24d | 2012-04-24 A | 2012-10-29 A | 821013920, 821015400 | 100% | 2012-04-24 | 2012-05-23 |  | CCB | 821 | 2110 | C010 | ARUP | 1 |
| 821013950 |  | Resubmit DDA | 18d | 2012-06-01 A | 2012-11-19 A | 821015400, 821013930 | 100% | 2012-06-01 | 2012-06-21 |  | CCB | 821 | 2110 | C010 | ARUP | 1 |
| 821013107 |  | RDO/GEO consultation & MTRC Approve | 24d | 2012-11-20 A | 2013-03-09 A | 821013950, 821013930 | 100% | 2012-11-20 | 2012-12-17 |  | CCB | 821 | 2110 | C010 | ARUP | 1 |
| 821015410 |  | Issue drawings for construction | 6d | 2013-03-11 A | 2013-03-16 A | 821013107 | 100% |  |  |  | CCB | 821 | 2110 | C010 |  | 1 |
|  | 11 | **Blasting Permit (Part II)- Tunnels** |  | 2011-04-01 | 2011-10-17 |  |  |  |  |  |  |  |  |  |  |  |
| 821011530 |  | Prepare own blasting assessment report (CBAR Part II) | 20d | 2011-04-01 A | 2011-04-21 A | 8210KD010 FS+233d | 100% | 2011-04-01 | 2011-04-28 |  | CCB | 821 | 2110 | C010 | ARUP | 1 |
| 821011131 |  | Comment CBAR | 24d | 2011-04-21 A | 2011-05-14 A | 821011530 | 100% |  |  | 2 - 821 Calendar Day | CCB | 821 | 2110 | C010 |  | 1 |
| 821011132 |  | Resubmit CBAR | 18d | 2011-05-14 A | 2011-06-08 A | 821011131 | 100% | 2011-05-14 | 2011-06-03 |  | CCB | 821 | 2110 | C010 |  | 1 |
| 821011143 |  | Comment CBAR | 24d | 2011-06-08 A | 2011-06-20 A | 821011132 | 100% | 2011-06-08 | 2011-07-01 | 2 - 821 Calendar Day | CCB | 821 | 2110 | C010 |  | 1 |
| 821011153 |  | Resubmit CBAR | 12d | 2011-06-08 A | 2011-06-08 A | 821011143 | 100% | 2011-06-08 | 2011-06-21 |  | CCB | 821 | 2110 | C010 |  | 1 |
| 821013350 |  | Prepare Blasting MS for application of blasting licences and blasting permits from COM | 18d | 2011-06-21 A | 2011-07-08 A | 821011133 FF, 821016470 FF | 100% | 2011-06-21 | 2011-07-12 |  | CCB | 821 | 2110 | C010 |  | 2 |
| 821011133 |  | Approve CBAR | 24d | 2011-07-08 A | 2011-10-17 A | 821011153 | 100% | 2011-06-30 | 2011-07-23 | 2 - 821 Calendar Day | CCB | 821 | 2110 | C010 |  | 1 |
| 821011871 |  | Comment Blasting MS and Blasting Permit | 21d | 2011-07-08 A | 2011-07-19 A | 821013350 | 100% | 2011-07-08 | 2011-07-28 | 2 - 821 Calendar Day | CCB | 821 | 2110 | C010 |  | 2 |
| 821011872 |  | Resubmit Blasting MS and Blasting Permit | 12d | 2011-07-19 A | 2011-08-30 A | 821011871 | 100% | 2011-07-19 | 2011-08-01 |  | CCB | 821 | 2110 | C010 |  | 2 |
| 821011873 |  | Approve Blasting MS and Blasting Permit | 12d | 2011-08-31 A | 2011-10-17 A | 821011872 | 100% | 2011-08-31 | 2011-09-11 | 2 - 821 Calendar Day | CCB | 821 | 2110 | C010 |  | 2 |

| ID | WBS | Activity | Duration | Start | Finish | Predecessors | Complete | Planned start | Planned finish | Calendar | Cost Centre | Sequence | Contracts | Location | Phase of Works | Person in Charge |
| --- | --- | --- | --- | --- | --- | --- | --- | --- | --- | --- | --- | --- | --- | --- | --- | --- |
|  | 12 | **Blasting Permit (Part III)- Tunnels** |  | 2011-05-07 | 2012-02-24 |  |  |  |  |  |  |  |  |  |  |  |
| 821016300 |  | Prepare own blasting assessment report (CBAR Part III) | 20d | 2011-05-07 A | 2011-10-19 A | 8210KD010 FS+292d | 100% | 2011-05-07 | 2011-05-31 |  | CCB | 1 | 821 | 2110 | C010 | ARUP |
| 821016310 |  | Comment CBAR | 24d | 2011-10-19 A | 2011-11-15 A | 821016300 | 100% | 2011-10-19 | 2011-11-11 | 2 - 821 Calendar Day | CCB | 1 | 821 | 2110 | C010 |  |
| 821016320 |  | Resubmit CBAR | 18d | 2011-11-02 A | 2011-11-18 A | 821016310 | 100% | 2011-11-02 | 2011-11-22 |  | CCB | 1 | 821 | 2110 | C010 |  |
| 821016350 |  | Prepare Blasting MS for application of blasting licences and blasting permits from COM | 18d | 2011-11-18 A | 2011-11-25 A | 821016360 FF, 821016490 FF | 100% | 2011-11-18 | 2011-12-08 |  | CCB | 2 | 821 | 2110 | C010 |  |
| 821016360 |  | Approve CBAR | 24d | 2011-11-25 A | 2011-12-08 A | 821016320 | 100% | 2011-11-25 | 2011-12-18 | 2 - 821 Calendar Day | CCB | 1 | 821 | 2110 | C010 |  |
| 821016370 |  | Comment Blasting MS and Blasting Permit | 14d | 2011-11-25 A | 2011-12-08 A | 821016350 | 100% |  |  | 2 - 821 Calendar Day | CCB | 2 | 821 | 2110 | C010 |  |
| 821016380 |  | Resubmit Blasting MS and Blasting Permit | 6d | 2011-12-08 A | 2011-12-20 A | 821016370 | 100% | 2012-12-08 | 2012-12-14 |  | CCB | 2 | 821 | 2110 | C010 |  |
| 821016390 |  | Approve Blasting MS and Blasting Permit | 21d | 2011-12-21 A | 2012-02-24 A | 821016380 | 100% | 2011-12-21 | 2012-01-10 | 2 - 821 Calendar Day | CCB | 2 | 821 | 2110 | C010 |  |
|  | 13 | **Geotechnical Features Inspection (Part II)** |  | 2011-04-01 | 2011-09-09 |  |  |  |  |  |  |  |  |  |  |  |
| 821016460 |  | Submit Design Report to MTRC (Part II) | 48d | 2011-04-01 A | 2011-04-28 A | 821011530 SS | 100% | 2011-04-01 | 2011-06-02 |  | CCC | 2 | 821 | 2120 | C010 | ARUP |
| 821016470 |  | RDO/GEO Consultation and MTRC Approve (Part II) | 28d | 2011-04-28 A | 2011-09-09 A | 821016460 | 100% | 2011-04-28 | 2011-05-25 | 2 - 821 Calendar Day | CCC | 2 | 821 | 2120 | C010 | ARUP |
|  | 14 | **Geotechnical Features Inspection (Part III)** |  | 2011-07-04 | 2011-09-09 |  |  |  |  |  |  |  |  |  |  |  |
| 821016480 |  | Submit Design Report to MTRC (Part III) | 48d | 2011-07-04 A | 2011-08-23 A | 821016300 SS | 100% | 2011-07-04 | 2011-08-27 |  | CCC | 2 | 821 | 2120 | C010 | ARUP |
| 821016490 |  | RDO/GEO Consultation and MTRC Approve (Part III) | 28d | 2011-08-23 A | 2011-09-09 A | 821016480 | 100% | 2011-08-23 | 2011-09-19 | 2 - 821 Calendar Day | CCC | 2 | 821 | 2120 | C010 | ARUP |
|  | 7 | **Bifurcation Cavern - Temporary Support** |  | 2011-09-01 | 2012-10-18 |  |  |  |  |  |  |  |  |  |  |  |
| 821014090 |  | Prepare & Submit Design report | 48d | 2011-09-01 A | 2012-05-23 A | 8210KD010 FS+365d | 100% | 2011-09-01 | 2011-10-29 |  | CCB | 1 | 821 | 2110 | C010 | ARUP |
| 821014100 |  | RDO/GEO consultation and MTRC review | 28d | 2012-05-27 A | 2012-08-09 A | 821014090 | 100% | 2012-05-27 | 2012-06-23 | 2 - 821 Calendar Day | CCB | 1 | 821 | 2110 | C010 | ARUP |
| 821014140 |  | Resubmit Design Report | 18d | 2012-08-09 A | 2012-08-21 A | 821014100 | 100% | 2012-08-09 | 2012-08-29 |  | CCB | 1 | 821 | 2110 | C010 | ARUP |
| 821013145 |  | RDO/GEO consultation & MTRC Approve | 24d | 2012-08-22 A | 2012-10-18 A | 821014100, 821014140 | 100% | 2012-08-22 | 2012-09-14 | 2 - 821 Calendar Day | CCB | 1 | 821 | 2110 | C010 | ARUP |
|  | 8 | **Bifurcation Cavern - Permanent Support** |  | 2011-10-19 | 2014-01-10 |  |  |  |  |  |  |  |  |  |  |  |
| 821014110 |  | Submit AIP Design for approval | 24d | 2011-10-19 A | 2012-04-18 A | 8210KD010 FS+380d | 100% | 2011-10-19 | 2011-11-15 |  | CCB | 1 | 821 | 2110 | C010 | ARUP |
| 821014120 |  | Approve AIP | 28d | 2012-04-18 A | 2012-10-26 A | 821014110 | 100% | 2012-04-18 | 2012-05-15 | 2 - 821 Calendar Day | CCB | 1 | 821 | 2110 | C010 | ARUP |
| 821014130 |  | Submit DDA for approval | 48d | 2012-09-24 A | 2013-04-25 A | 821014110, 821014120 FF+6d | 100% | 2012-09-24 | 2012-11-21 |  | CCB | 1 | 821 | 2110 | C010 | ARUP |
| 821014260 |  | RDO/GEO consultation and MTRC review | 24d | 2013-04-26 A | 2013-07-12 A | 821014130 | 100% | 2013-04-26 | 2013-05-19 | 2 - 821 Calendar Day | CCB | 1 | 821 | 2110 | C010 | ARUP |
| 821013185 |  | Resubmit DDA | 18d | 2013-07-13 A | 2013-12-03 A | 821014260 | 100% | 2013-07-13 | 2013-08-02 |  | CCB | 1 | 821 | 2110 | C010 | ARUP |
| 821013155 |  | RDO/GEO consultation & MTRC Approve | 24d | 2013-12-04 A | 2013-12-17 A | 821013185 | 100% | 2013-12-04 | 2013-12-27 | 2 - 821 Calendar Day | CCB | 1 | 821 | 2110 | C010 | ARUP |
| 821015440 |  | Issue drawings for construction | 6d | 2013-12-18 A | 2014-01-10 A | 821013155 | 100% | 2013-12-18 | 2013-12-24 |  | CCB | 1 | 821 | 2110 | C010 |  |

| ID | WBS | Activity | Duration | Start | Finish | Predecessors | Complete | Planned start | Planned finish | Calendar | Cost Centre | Sequence | Contracts | Location | Phase of Works | Person in Charge |
| --- | --- | --- | --- | --- | --- | --- | --- | --- | --- | --- | --- | --- | --- | --- | --- | --- |
|  | 6 | **TBM Tunnel - Lining Design** |  | 2010-11-20 | 2012-04-02 |  |  |  |  |  |  |  |  |  |  |  |
| 821014030 |  | Submit AIP Design for approval | 24d | 2010-11-20 A | 2010-12-15 A | 821015400 | 100% | 2010-11-20 | 2010-12-17 |  | CCB | 1 | 821 | 2110 | C010 | ARUP |
| 821014040 |  | Approve AIP | 24d | 2010-12-16 A | 2011-06-10 A | 821014030 | 100% | 2010-12-16 | 2011-01-08 | 2 - 821 Calendar Day | CCB | 1 | 821 | 2110 | C010 | ARUP |
| 821014050 |  | Submit DDA for approval | 48d | 2011-03-01 A | 2011-04-07 A | 821014030, 821014040 FF+6d | 100% | 2011-03-01 | 2011-04-29 |  | CCB | 1 | 821 | 2110 | C010 | ARUP |
| 821014060 |  | RDO/GEO consultation and MTRC review | 24d | 2011-04-07 A | 2011-06-10 A | 821014050 | 100% | 2011-04-07 | 2011-04-30 | 2 - 821 Calendar Day | CCB | 1 | 821 | 2110 | C010 | ARUP |
| 821014070 |  | Resubmit DDA | 18d | 2011-06-01 A | 2011-06-22 A | 821014060 | 100% | 2011-06-02 | 2011-06-23 |  | CCB | 1 | 821 | 2110 | C010 | ARUP |
| 821013137 |  | RDO/GEO consultation & MTRC Approve | 24d | 2011-06-22 A | 2011-12-13 A | 821014060, 821014070 | 100% | 2011-06-22 | 2011-07-15 | 2 - 821 Calendar Day | CCB | 1 | 821 | 2110 | C010 | ARUP |
| 821015420 |  | Issue drawings for construction | 6d | 2011-12-14 A | 2012-04-02 A | 821013137 | 100% | 2011-12-14 | 2011-12-20 |  | CCB |  | 821 | 2110 | C010 |  |
|  | 9 | **Cross Passage - Temporary Supoort** |  | 2011-12-01 | 2012-09-21 |  |  |  |  |  |  |  |  |  |  |  |
| 821014170 |  | Prepare & Submit Design Report | 48d | 2011-12-01 A | 2012-07-09 A | 8210KD010 FS+562d | 100% | 2011-12-01 | 2012-02-01 |  | CCB | 1 | 821 | 2110 | C010 | ARUP |
| 821014240 |  | MTRC review and RDO/GEO consultation | 24d | 2012-07-10 A | 2012-08-08 A | 821014170 | 100% | 2012-07-10 | 2012-08-06 |  | CCB | 1 | 821 | 2110 | C010 | ARUP |
| 821014250 |  | Resubmit Design Report | 18d | 2012-08-09 A | 2012-08-21 A | 821014240 | 100% | 2012-08-09 | 2012-08-29 |  | CCB | 1 | 821 | 2110 | C010 | ARUP |
| 821014180 |  | RDO/GEO consultation & MTRC Approve | 24d | 2012-08-22 A | 2012-09-21 A | 821014170, 821014250 | 100% | 2012-08-22 | 2012-09-18 |  | CCB | 1 | 821 | 2110 | C010 | ARUP |
|  | 10 | **Cross Passage - Permanent Support** |  | 2012-04-23 | 2013-09-06 |  |  |  |  |  |  |  |  |  |  |  |
| 821014190 |  | Submit AIP Design for approval | 24d | 2012-04-23 A | 2012-09-26 A | 821014170 SS+28d | 100% | 2012-04-23 | 2012-05-22 |  | CCB | 1 | 821 | 2110 | C010 | ARUP |
| 821014200 |  | Approve AIP | 24d | 2012-09-26 A | 2013-03-02 A | 821014190 | 100% | 2012-09-26 | 2012-10-26 |  | CCB | 1 | 821 | 2110 | C010 | ARUP |
| 821014210 |  | Submit DDA for approval | 48d | 2013-03-04 A | 2013-03-26 A | 821014190, 821014200 FF+6d | 100% | 2013-03-04 | 2013-05-03 |  | CCB | 1 | 821 | 2110 | C010 | ARUP |
| 821014220 |  | RDO/GEO consultation and MTRC review | 24d | 2013-03-27 A | 2013-07-08 A | 821014210 | 100% | 2013-03-27 | 2013-04-27 |  | CCB | 1 | 821 | 2110 | C010 | ARUP |
| 821013175 |  | Resubmit DDA | 18d | 2013-07-09 A | 2013-07-29 A | 821014220 | 100% |  |  |  | CCB | 1 | 821 | 2110 | C010 | ARUP |
| 821013177 |  | RDO/GEO consultation & MTRC Approve | 24d | 2013-07-30 A | 2013-08-12 A | 821013175 FF, 821013175 | 100% | 2013-07-30 | 2013-08-26 |  | CCB | 1 | 821 | 2110 | C010 | ARUP |
| 821015430 |  | Issue drawings for construction | 6d | 2013-08-13 A | 2013-09-06 A | 821013177 | 100% | 2013-08-13 | 2013-08-19 |  | CCB | 1 | 821 | 2110 | C010 |  |
|  | 4 | **Formwork - Tunnel** |  | 2011-06-02 | 2012-05-29 |  |  |  |  |  |  |  |  |  |  |  |
| 821014160 |  | Prepare & Submit Design report | 48d | 2011-06-02 A | 2012-04-27 A | 8210KD010 FS+245d | 100% | 2011-06-02 | 2011-07-29 |  | CCB | 1 | 821 | 2110 | C010 | ARUP |
| 821014370 |  | MTRC review | 14d | 2012-04-27 A | 2012-05-10 A | 821014160 | 100% | 2012-04-27 | 2012-05-15 |  | CCB | 1 | 821 | 2110 | C010 | ARUP |
| 821014500 |  | Resubmit Design Report | 7d | 2012-05-10 A | 2012-05-16 A | 821014370 | 100% | 2012-05-10 | 2012-05-17 |  | CCB | 1 | 821 | 2110 | C010 | ARUP |
| 821013165 |  | MTRC Approve | 24d | 2012-05-16 A | 2012-05-29 A | 821014500, 821014370 | 100% | 2012-05-16 | 2012-06-12 |  | CCB | 1 | 821 | 2110 | C010 | ARUP |

| ID | WBS | Activity | Duration | Start | Finish | Predecessors | Complete | Planned start | Planned finish | Calendar | Cost Centre | Sequence | Contracts | Location | Phase of Works | Person in Charge |
| --- | --- | --- | --- | --- | --- | --- | --- | --- | --- | --- | --- | --- | --- | --- | --- | --- |
|  | 5 | **Formwork - Internal Structure** |  | 2012-01-31 | 2013-04-24 |  |  |  |  |  |  |  |  |  |  |  |
| 821014600 |  | Prepare & Submit Design report | 18d | 2012-01-31 A | 2012-10-03 A | 821014160 SS+175d | 100% | 2012-01-31 | 2012-02-20 |  | CCB | 1 | 821 | 2110 | C010 | ARUP |
| 821014610 |  | MTRC review | 24d | 2012-10-03 A | 2012-11-02 A | 821014600 | 100% | 2012-09-28 | 2012-10-29 |  | CCB | 1 | 821 | 2110 | C010 | ARUP |
| 821014620 |  | Resubmit Design Report | 12d | 2012-11-03 A | 2013-03-12 A | 821014610 | 100% | 2012-11-03 | 2012-11-16 |  | CCB | 1 | 821 | 2110 | C010 | ARUP |
| 821013215 |  | MTRC Approve | 24d | 2013-03-13 A | 2013-04-24 A | 821014620 | 100% | 2013-03-13 | 2013-04-13 |  | CCB | 1 | 821 | 2110 | C010 | ARUP |
|  | 15 | **Blasting Permit (Part IV)- Tunnels** |  | 2012-02-02 | 2013-02-07 |  |  |  |  |  |  |  |  |  |  |  |
| 821017660 |  | Prepare own blasting assessment report (CBAR Part IV) | 20d | 2012-02-02 A | 2012-07-16 A | 821016390 FS+89d | 100% | 2012-02-02 | 2012-02-24 |  | CCB | 1 | 821 | 2110 | C010 | ARUP |
| 821017590 |  | Comment CBAR | 24d | 2012-07-17 A | 2012-08-02 A | 821017660 | 100% | 2012-07-17 | 2012-08-09 | 2 - 821 Calendar Day | CCB | 1 | 821 | 2110 | C010 |  |
| 821017600 |  | Resubmit CBAR | 18d | 2012-08-03 A | 2012-09-13 A | 821017590 | 100% | 2012-08-03 | 2012-08-23 |  | CCB | 1 | 821 | 2110 | C010 |  |
| 821017610 |  | Prepare Blasting MS for application of blasting licences and blasting permits from COM | 18d | 2012-10-29 A | 2013-01-11 A | 821017650 FF | 100% | 2012-10-29 | 2012-11-17 |  | CCB | 2 | 821 | 2110 | C010 |  |
| 821017630 |  | Resubmit Blasting MS and Blasting Permit | 6d | 2013-01-12 A | 2013-01-19 A | 821017620 | 100% | 2013-01-26 | 2013-02-01 |  | CCB | 2 | 821 | 2110 | C010 |  |
| 821017620 |  | Comment Blasting MS and Blasting Permit | 14d | 2013-01-12 A | 2013-01-25 A | 821017610 | 100% |  |  | 2 - 821 Calendar Day | CCB | 2 | 821 | 2110 | C010 |  |
| 821017640 |  | Approve Blasting MS and Blasting Permit | 21d | 2013-01-21 A | 2013-02-07 A | 821017630 | 100% | 2013-01-21 | 2013-02-10 | 2 - 821 Calendar Day | CCB | 2 | 821 | 2110 | C010 |  |
| 821017650 |  | Approve CBAR | 24d | 2013-01-21 A | 2013-02-07 A | 821017600 | 100% | 2013-01-21 | 2013-02-13 | 2 - 821 Calendar Day | CCB | 1 | 821 | 2110 | C010 |  |
|  | 16 | **Geotechnical Features Inspection (Part IV)** |  | 2012-05-03 | 2012-07-20 |  |  |  |  |  |  |  |  |  |  |  |
| 821017670 |  | Submit Design Report to MTRC (Part IV) | 48d | 2012-05-03 A | 2012-07-09 A | 821017660 SS | 100% | 2012-05-03 | 2012-06-28 |  | CCC | 2 | 821 | 2120 | C010 | ARUP |
| 821017680 |  | RDO/GEO Consultation and MTRC Approve (Part IV) | 28d | 2012-07-09 A | 2012-07-20 A | 821017670 | 100% | 2012-07-09 | 2012-08-05 | 2 - 821 Calendar Day | CCC | 2 | 821 | 2120 | C010 | ARUP |
|  | 5 | **Major Procurement** |  | 2010-07-19 | 2012-06-25 |  |  |  |  |  |  |  |  |  |  |  |
|  | 6 | **Subcontractor** |  | 2010-07-19 | 2012-06-25 |  |  |  |  |  |  |  |  |  |  |  |
| 821010150 |  | Place order of Jumbo & equipment | 42d | 2010-07-19 A | 2010-08-29 A | 8210KD010 | 100% | 2010-07-19 | 2010-09-04 |  | CCB | 1 | 821 | 2110 | C030 |  |
| 821010170 |  | Fabrication, delivery and assembly of jumbo & equipment | 90d | 2010-08-29 A | 2010-12-22 A | 821010150 | 100% | 2010-08-30 | 2010-12-15 |  | CCB | 1 | 821 | 2110 | C030 |  |
| 821010760 |  | Shutter procurement | 16d | 2012-02-02 A | 2012-02-20 A | 821013165 SS+18d | 100% |  |  |  | CCB | 1 | 821 | 2110 | C030 |  |
| 821010850 |  | South Shutter fabrication | 127d | 2012-02-21 A | 2012-05-25 A | 821010760 | 100% | 2012-02-21 | 2012-06-26 | 2 - 821 Calendar Day | CCB | 1 | 821 | 2110 | C030 |  |
| 821017810 |  | North Shutter fabrication | 155d | 2012-02-21 A | 2012-06-25 A | 821010760 | 100% | 2012-02-21 | 2012-07-24 | 2 - 821 Calendar Day | CCB | 1 | 821 | 2110 | C030 |  |

| ID | WBS | Activity | Duration | Start | Finish | Predecessors | Complete | Planned start | Planned finish | Constraint | Calendar | Resources | Cost Centre | Sequence | Contracts | Location | Phase of Works | Sub-location |
| --- | --- | --- | --- | --- | --- | --- | --- | --- | --- | --- | --- | --- | --- | --- | --- | --- | --- | --- |
|  | 2 | **Submission** |  | 2011-02-24 | 2015-02-06 |  |  |  |  |  |  |  |  |  |  |  |  |  |
|  | 2 | **Method Statement** |  | 2011-02-24 | 2012-11-12 |  |  |  |  |  |  |  |  |  |  |  |  |  |
| 821010680 |  | Method statement for Twin Track Tunnel | 36d | 2011-02-24 A | 2011-11-14 A | 821013520 FS+124d | 100% | 2011-02-24 | 2011-04-07 |  |  |  | CCB | 1 | 821 | 2110 | C010 |  |
| 821010700 |  | Approve Method statement for Twin Track Tunnel | 28d | 2011-11-14 A | 2011-12-30 A | 8210KD010 FS+30d, 8210KD010 SS, 821010680 | 100% | 2011-11-14 | 2011-12-11 |  | 2 - 821 Calendar Day |  | CCB | 1 | 821 | 2110 | C010 |  |
| 821015840 |  | Method statement for TBM removal | 24d | 2012-07-25 A | 2012-08-21 A | 821016020 FS+450d | 100% |  |  |  |  |  | CCB | 1 | 821 | 2110 | C010 |  |
| 821015880 |  | Approve Method statement for TBM removal | 28d | 2012-08-22 A | 2012-11-12 A | 821015840 | 100% | 2012-08-22 | 2012-09-18 |  | 2 - 821 Calendar Day |  | CCB | 1 | 821 | 2110 | C010 |  |
|  | 1 | **Completion** |  | 2013-12-02 | 2015-02-06 |  |  |  |  |  |  |  |  |  |  |  |  |  |
| 821013220 |  | Prepare and submit as-built drawings under Ref 4C | 72d | 2013-12-02 A | 2015-02-06 A | 8210KD050 | 100% | 2013-12-02 | 2014-03-01 |  |  |  | CCB |  | 821 | 2110 | C010 |  |
| 821013240 |  | Prepare and submit as-built drawings under Ref 4D | 72d | 2013-12-02 A | 2015-02-06 A | 8210KD080 | 100% | 2013-12-02 | 2014-03-01 |  |  |  | CCB |  | 821 | 2110 | C010 |  |
|  | 4 | **Construction** |  | 2011-10-20 | 2014-07-05 |  |  |  |  |  |  |  |  |  |  |  |  |  |
|  | 1 | **North Twin Track Tunnel** |  | 2011-11-02 | 2013-11-23 |  |  |  |  |  |  |  |  |  |  |  |  |  |
|  | 1 | **Excavation** |  | 2011-11-02 | 2013-03-01 |  |  |  |  |  |  |  |  |  |  |  |  |  |
| 821011418 |  | Construct temporary by-pass tunnel (North) | 12d | 2011-11-02 A | 2011-11-16 A | 821012300 FS+1d, 821017140 | 100% | 2011-11-02 | 2011-11-15 |  |  | Tunneller [352 h]; Plant Operator [3840 h]; Excavation - Hard [6210 m3]; Backhoe [112 h]; Backhoe with Breaker [112 h]; Loader [112 h]; Crane Lorry [112 h]; Truck Lorry [112 h]; Drilling Jumbo [224 h]; Cherry Picker [112 h]; Welder [352 h]; Explosive Truck Driver [112 h]; Dump Truck [528 h]; Welder / Fitter [112 h]; Tower Crane [112 h]; Forklift [112 h]; Grouting Set [112 h]; Shotcrete Set [112 h]; Other Skill Labour (Civil) [576 h]; Shortfirer [352 h]; Ganger [192 h]; Mechanic [192 h]; Miner [384 h]; Electrician [192 h] | CCB | 1 | 821 | 2110 | C090 | TUNN |
| 821011420 |  | Twin track tunnel drill and blast Ch134604 - Ch134569 (35m) | 14d | 2011-11-16 A | 2011-11-30 A | 821010680, 821013095, 821011133, 821010700, 821011873, 821011418 | 100% | 2011-11-16 | 2011-12-01 |  |  | Loader [112 h]; Crane Lorry [112 h]; Truck Lorry [112 h]; Drilling Jumbo [224 h]; Cherry Picker [112 h]; Forklift [112 h]; Grouting Set [112 h]; Shotcrete Set [112 h]; Other Skill Labour (Civil) [672 h]; Shortfirer [448 h]; Ganger [224 h]; Electrician [224 h]; Mechanic [224 h]; Miner [448 h]; Plant Operator [4480 h]; Excavation - Hard [4861 m3]; Welder [224 h]; Explosive Truck Driver [112 h]; Dump Truck [672 h]; Tower Crane [112 h]; Backhoe [112 h]; Backhoe with Breaker [112 h] | CCB | 1 | 821 | 2110 | C090 | TUNN |
| 821016820 |  | Twin track tunnel drill and blast Ch134569 - Ch134515 (54m) | 12d | 2011-12-01 A | 2011-12-14 A | 821011420 | 100% |  |  |  |  | Plant Operator [3840 h]; Excavation - Hard [7500 m3]; Welder [192 h]; Explosive Truck Driver [96 h]; Dump Truck [576 h]; Tower Crane [96 h]; Miner [384 h]; Backhoe [96 h]; Backhoe with Breaker [96 h]; Loader [96 h]; Crane Lorry [96 h]; Truck Lorry [96 h]; Drilling Jumbo [192 h]; Cherry Picker [96 h]; Forklift [96 h]; Grouting Set [96 h]; Shotcrete Set [96 h]; Other Skill Labour (Civil) [576 h]; Shortfirer [384 h]; Ganger [192 h]; Electrician [192 h]; Mechanic [192 h] | CCB | 1 | 821 | 2110 | C090 | TUNN |
| 821011440 |  | Twin track tunnel drill and blast Ch134515 - Ch134315 (200m) | 44d | 2011-12-14 A | 2012-02-07 A | 821016820 | 100% | 2011-12-14 | 2012-02-09 |  |  | Excavation - Hard [27776 m3]; Backhoe [376 h]; Backhoe with Breaker [376 h]; Loader [376 h]; Crane Lorry [376 h]; Truck Lorry [376 h]; Drilling Jumbo [752 h]; Cherry Picker [376 h]; Forklift [376 h]; Grouting Set [376 h]; Shotcrete Set [376 h]; Other Skill Labour (Civil) [2160 h]; Shortfirer [1440 h]; Ganger [720 h]; Electrician [720 h]; Mechanic [720 h]; Plant Operator [14080 h]; Welder [752 h]; Explosive Truck Driver [376 h]; Dump Truck [2112 h]; Tower Crane [376 h]; Miner [1440 h] | CCB | 1 | 821 | 2110 | C090 | TUNN |
| 821011430 |  | Twin track tunnel drill and blast Ch134315 - Ch134115 (200m) | 43d | 2012-02-07 A | 2012-03-27 A | 821011440, 821016390 | 100% |  |  |  |  | Grouting Set [392 h]; Shotcrete Set [512 h]; Other Skill Labour (Civil) [2064 h]; Shortfirer [1376 h]; Ganger [784 h]; Electrician [784 h]; Mechanic [784 h]; Plant Operator [13760 h]; Welder [784 h]; Explosive Truck Driver [392 h]; Dump Truck [2064 h]; Tower Crane [392 h]; Miner [1376 h]; Excavation - Hard [27776 m3]; Backhoe [392 h]; Backhoe with Breaker [392 h]; Loader [392 h]; Crane Lorry [392 h]; Truck Lorry [512 h]; Drilling Jumbo [784 h]; Cherry Picker [392 h]; Forklift [392 h] | CCB | 1 | 821 | 2110 | C090 | TUNN |
| 821011450 |  | Twin track tunnel drill and blast Ch134115 - Ch133915 (200m) | 43d | 2012-03-27 A | 2012-05-26 A | 821011430 | 100% | 2012-03-27 | 2012-05-22 |  |  | Miner [1376 h]; Ganger [784 h]; Welder [784 h]; Explosive Truck Driver [392 h]; Dump Truck [2064 h]; Tower Crane [392 h]; Electrician [784 h]; Mechanic [784 h]; Plant Operator [13760 h]; Excavation - Hard [27776 m3]; Backhoe [392 h]; Backhoe with Breaker [392 h]; Loader [392 h]; Crane Lorry [392 h]; Truck Lorry [392 h]; Drilling Jumbo [784 h]; Cherry Picker [392 h]; Forklift [392 h]; Grouting Set [392 h]; Shotcrete Set [392 h]; Other Skill Labour (Civil) [2064 h]; Shortfirer [1376 h] | CCB | 1 | 821 | 2110 | C090 | TUNN |
| 821016830 |  | Twin track tunnel drill and blast Ch133915 - Ch133795 (120m) | 30d | 2012-05-26 A | 2012-07-03 A | 821011450 | 100% | 2012-05-26 | 2012-06-30 |  |  | Welder [480 h]; Explosive Truck Driver [320 h]; Dump Truck [1440 h]; Tower Crane [240 h]; Miner [960 h]; Ganger [480 h]; Electrician [480 h]; Mechanic [480 h]; Plant Operator [9600 h]; Excavation - Hard [16666 m3]; Backhoe [320 h]; Backhoe with Breaker [320 h]; Loader [320 h]; Crane Lorry [320 h]; Truck Lorry [320 h]; Drilling Jumbo [480 h]; Cherry Picker [320 h]; Forklift [320 h]; Grouting Set [320 h]; Shotcrete Set [320 h]; Other Skill Labour (Civil) [1440 h]; Shortfirer [960 h] | CCB | 1 | 821 | 2110 | C090 | TUNN |
| 821011600 |  | Twin track tunnel drill and blast Ch133795 - Ch133660 (135m) | 34d | 2012-07-03 A | 2012-08-10 A | 821016830 | 100% |  |  |  |  | Shotcrete Set [320 h]; Other Skill Labour (Civil) [1632 h]; Shortfirer [1088 h]; Welder [544 h]; Explosive Truck Driver [320 h]; Dump Truck [1632 h]; Tower Crane [392 h]; Miner [1088 h]; Ganger [544 h]; Electrician [544 h]; Mechanic [544 h]; Plant Operator [10880 h]; Excavation - Hard [18745 m3]; Backhoe [320 h]; Backhoe with Breaker [320 h]; Loader [320 h]; Crane Lorry [320 h]; Truck Lorry [320 h]; Drilling Jumbo [640 h]; Cherry Picker [320 h]; Forklift [320 h]; Grouting Set [320 h] | CCB | 1 | 821 | 2110 | C090 | TUNN |
| 821016334 |  | Systematic pre-excavation grouting for Ch133660 - Ch133300 | 90d | 2012-07-31 A | 2012-12-05 A | 821011600 FS-12d | 100% | 2012-07-31 | 2012-11-15 |  |  | Other Skill Labour (Civil) [4320 h]; Grouting Set [480 h]; Drilling rig [720 h]; Plant Operator [720 h] | CCB |  | 821 | 2110 | C090 | TUNN |
| 821011610 |  | Twin track tunnel drill and blast Ch133660 - Ch133480 (180m) | 48d | 2012-08-10 A | 2012-09-22 A | 821011600 | 100% | 2012-08-10 | 2012-10-06 |  |  | Excavation - Hard [24998 m3]; Backhoe [368 h]; Backhoe with Breaker [368 h]; Loader [368 h]; Crane Lorry [368 h]; Truck Lorry [368 h]; Drilling Jumbo [736 h]; Cherry Picker [368 h]; Forklift [368 h]; Grouting Set [368 h]; Shotcrete Set [368 h]; Other Skill Labour (Civil) [2112 h]; Shortfirer [1408 h]; Ganger [768 h]; Electrician [704 h]; Mechanic [704 h]; Plant Operator [15360 h]; Welder [736 h]; Explosive Truck Driver [368 h]; Dump Truck [2304 h]; Welder / Fitter [368 h]; Miner [1408 h] | CCB | 1 | 821 | 2110 | C090 | TUNN |
| 821011670 |  | Twin track tunnel drill and blast Ch133480 - Ch133300 (180m) | 47d | 2012-09-22 A | 2012-12-04 A | 821011610, 821016334 FF | 100% | 2012-09-22 | 2012-11-19 | mandatory finish 2012-09-22 |  | Mechanic [624 h]; Plant Operator [15360 h]; Welder [704 h]; Explosive Truck Driver [352 h]; Dump Truck [2304 h]; Miner [1408 h]; Excavation - Hard [24998 m3]; Backhoe [312 h]; Backhoe with Breaker [312 h]; Loader [312 h]; Crane Lorry [312 h]; Truck Lorry [312 h]; Drilling Jumbo [624 h]; Cherry Picker [312 h]; Forklift [312 h]; Grouting Set [312 h]; Shotcrete Set [312 h]; Other Skill Labour (Civil) [2304 h]; Shortfirer [1536 h]; Ganger [624 h]; Electrician [624 h] | CCB | 1 | 821 | 2110 | C090 | TUNN |
| 821011220 |  | Drill & blast of excavation for foul water Ch133371.9 & ground water sump Ch133371.9 | 47d | 2012-11-05 A | 2012-11-19 A | 821017640, 821017680, 821011670 SS+30d | 100% | 2012-11-05 | 2012-12-31 | mandatory start 2012-11-05 |  | Excavation - Hard [3465 m3]; Explosive Truck Driver [360 h]; Dump Truck [768 h]; Welder / Fitter [768 h] | CCB | 2 | 821 | 2110 | C090 | TUNN |
| 821011690 |  | Twin track tunnel drill and blast Ch133300 - Ch133240 (60m) | 15d | 2012-12-04 A | 2012-12-19 A | 821011670 | 100% | 2012-12-04 | 2012-12-20 | mandatory start 2012-12-03 |  | Excavation - Hard [8333 m3]; Backhoe [120 h]; Backhoe with Breaker [120 h]; Loader [120 h]; Crane Lorry [120 h]; Truck Lorry [120 h]; Drilling Jumbo [240 h]; Cherry Picker [120 h]; Forklift [120 h]; Grouting Set [120 h]; Shotcrete Set [120 h]; Other Skill Labour (Civil) [720 h]; Shortfirer [480 h]; Ganger [240 h]; Electrician [240 h]; Mechanic [240 h]; Plant Operator [4800 h]; Welder [240 h]; Explosive Truck Driver [120 h]; Dump Truck [720 h]; Miner [480 h] | CCB | 1 | 821 | 2110 | C090 | TUNN |
| 821017260 |  | Twin track tunnel drill and blast Ch133240 - Ch133120 (120m) | 41d | 2012-12-19 A | 2013-01-19 A | 821011690 | 100% | 2012-12-19 | 2013-02-07 |  |  | Excavation - Hard [16666 m3]; Backhoe [448 h]; Backhoe with Breaker [448 h]; Loader [448 h]; Crane Lorry [448 h]; Truck Lorry [448 h]; Drilling Jumbo [672 h]; Cherry Picker [448 h]; Forklift [448 h]; Grouting Set [448 h]; Shotcrete Set [448 h]; Other Skill Labour (Civil) [2016 h]; Shortfirer [1344 h]; Ganger [672 h]; Electrician [672 h]; Mechanic [672 h]; Plant Operator [13120 h]; Welder [672 h]; Explosive Truck Driver [448 h]; Dump Truck [1968 h]; Miner [1344 h] | CCB | 1 | 821 | 2110 | C090 | TUNN |
| 821016344 |  | Twin track tunnel drill and blast Ch133120 - Ch133000 (120m) | 41d | 2013-01-19 A | 2013-03-01 A | 821017260 | 100% | 2013-01-19 | 2013-03-11 |  |  | Crane Lorry [328 h]; Truck Lorry [328 h]; Drilling Jumbo [656 h]; Cherry Picker [328 h]; Forklift [328 h]; Grouting Set [328 h]; Shotcrete Set [328 h]; Other Skill Labour (Civil) [1968 h]; Shortfirer [1312 h]; Ganger [656 h]; Electrician [656 h]; Mechanic [656 h]; Plant Operator [13120 h]; Welder [656 h]; Explosive Truck Driver [328 h]; Dump Truck [1968 h]; Miner [1312 h]; Excavation - Hard [16666 m3]; Backhoe [328 h]; Backhoe with Breaker [328 h]; Loader [328 h] | CCB | 1 | 821 | 2110 | C090 | TUNN |

| ID | WBS | Activity | Duration | Start | Finish | Predecessors | Complete | Planned start | Planned finish | Constraint | Resources | Cost Centre | Sequence | Contracts | Location | Sub-location | Phase of Works |
| --- | --- | --- | --- | --- | --- | --- | --- | --- | --- | --- | --- | --- | --- | --- | --- | --- | --- |
|  | 4 | **Drainage & Invert** |  | 2012-04-10 | 2013-06-08 |  |  |  |  |  |  |  |  |  |  |  |  |
| 821011260 |  | Drainage system & invert slab (Ch134604 - 134434) | 36d | 2012-04-10 A | 2012-11-15 A | 821011430 FS+3d, 821013215, 821015380 | 100% | 2012-04-10 | 2012-05-23 | mandatory finish 2012-09-08 | Concrete [1285 m3]; Other Skill Labour (Civil) [1200 h]; Carpenter [800 h]; Concretor [600 h]; Drainlayer [400 h] | CCB | 5 | 821 | 2110 | TUNN | C090 |
| 821016084 |  | Drainage system & invert slab (Ch134434 - 134264) | 36d | 2012-04-28 A | 2012-08-15 A | 821011260 | 100% | 2012-04-30 | 2012-06-11 |  | Concrete [1285 m3]; Other Skill Labour (Civil) [1200 h]; Carpenter [800 h]; Concretor [600 h]; Drainlayer [400 h] | CCB | 5 | 821 | 2110 | TUNN | C090 |
| 821013480 |  | Drainage system & invert slab (Ch134264 - 134087) | 37d | 2012-06-18 A | 2012-09-06 A | 821016084 | 100% | 2012-06-18 | 2012-08-01 |  | Concrete [1338 m3]; Other Skill Labour (Civil) [1248 h]; Carpenter [832 h]; Concretor [624 h]; Drainlayer [416 h] | CCB | 5 | 821 | 2110 | TUNN | C090 |
| 821016104 |  | Drainage system & invert slab (Ch134087 - 133924) | 36d | 2012-08-13 A | 2012-09-29 A | 821013480 | 100% | 2012-08-13 | 2012-09-22 |  | Concretor [600 h]; Drainlayer [400 h]; Concrete [1232 m3]; Other Skill Labour (Civil) [1152 h]; Carpenter [800 h] | CCB | 5 | 821 | 2110 | TUNN | C090 |
| 821017270 |  | Drainage system & invert slab (Ch133924 - 133754) | 36d | 2012-09-10 A | 2012-12-07 A | 821016104, 821011450 | 100% | 2012-09-10 | 2012-10-24 |  | Concrete [1285 m3]; Other Skill Labour (Civil) [1152 h]; Carpenter [800 h]; Concretor [600 h]; Drainlayer [400 h] | CCB | 5 | 821 | 2110 | TUNN | C090 |
| 821017280 |  | Drainage system & invert slab (Ch133754 - 133584) | 36d | 2012-10-25 A | 2013-01-12 A | 821017270, 821016830 | 100% | 2012-10-25 | 2012-12-05 |  | Concrete [1285 m3]; Other Skill Labour (Civil) [1152 h]; Carpenter [800 h]; Concretor [600 h]; Drainlayer [400 h] | CCB | 5 | 821 | 2110 | TUNN | C090 |
| 821017290 |  | Drainage system & invert slab (Ch133584 - 133489) | 20d | 2012-12-29 A | 2013-02-20 A | 821011610, 821017280 | 100% | 2012-12-29 | 2013-01-22 | mandatory finish 2013-02-23 | Concrete [718 m3]; Other Skill Labour (Civil) [672 h]; Carpenter [448 h]; Concretor [336 h]; Drainlayer [224 h] | CCB | 5 | 821 | 2110 | TUNN | C090 |
| 821017300 |  | Drainage system & invert slab (Ch133489 - 133319) | 36d | 2013-01-17 A | 2013-05-04 A | 821011610, 821017290 | 100% | 2013-01-17 | 2013-03-02 | mandatory finish 2013-04-30 | Concrete [1285 m3]; Other Skill Labour (Civil) [1152 h]; Carpenter [800 h]; Concretor [600 h]; Drainlayer [400 h] | CCB | 5 | 821 | 2110 | TUNN | C090 |
| 821017310 |  | Drainage system & invert slab (Ch133319 - 133149) | 36d | 2013-05-06 A | 2013-06-08 A | 821017300 | 100% | 2013-05-06 | 2013-06-18 |  | Other Skill Labour (Civil) [1152 h]; Carpenter [800 h]; Concretor [600 h]; Drainlayer [400 h]; Concrete [1285 m3] | CCB | 5 | 821 | 2110 | TUNN | C090 |
| 821016094 |  | Drainage system & invert slab (Ch133149 - 133000) | 30d | 2013-05-08 A | 2013-06-08 A | 821016344 FF, 821014700, 821017310 | 100% | 2013-05-08 | 2013-06-13 | mandatory start 2013-05-29 | Concrete [1126 m3]; Other Skill Labour (Civil) [1056 h]; Carpenter [704 h]; Concretor [528 h]; Drainlayer [352 h] | CCB | 5 | 821 | 2110 | TUNN | C090 |
|  | 8 | **Kicker** |  | 2012-03-02 | 2013-06-14 |  |  |  |  |  |  |  |  |  |  |  |  |
| 821011240 |  | Vault Kicker (Ch134604 - 134501) | 30d | 2012-03-02 A | 2012-11-20 A | 821016084 FS+13d, 821015380 | 100% | 2012-03-02 | 2012-04-10 | mandatory finish 2012-10-06 | Concrete [80 m3]; Carpenter [960 h]; Concretor [720 h]; Other Skill Labour (Civil) [1440 h]; Steel Fixer [480 h] | CCB | 3 | 821 | 2110 | TUNN | C090 |
| 821013420 |  | Vault Kicker (Ch134501 - 134201) | 48d | 2012-04-10 A | 2012-10-27 A | 821011240 | 100% | 2012-04-10 | 2012-06-06 | mandatory finish 2012-10-24 | Concrete [233 m3]; Carpenter [1536 h]; Other Skill Labour (Civil) [2304 h]; Concretor [1152 h]; Steel Fixer [768 h] | CCB | 3 | 821 | 2110 | TUNN | C090 |
| 821013430 |  | Vault Kicker (Ch134201 - 133901) | 48d | 2012-07-16 A | 2012-12-29 A | 821013420 | 100% | 2012-07-16 | 2012-09-08 |  | Carpenter [1536 h]; Other Skill Labour (Civil) [2304 h]; Concrete [233 m3]; Concretor [1152 h]; Steel Fixer [768 h] | CCB | 3 | 821 | 2110 | TUNN | C090 |
| 821016910 |  | Vault Kicker (Ch133901 - 133601) | 48d | 2012-09-17 A | 2013-03-02 A | 821013430 | 100% | 2012-09-17 | 2012-11-14 |  | Concrete [233 m3]; Concretor [1152 h]; Carpenter [1536 h]; Other Skill Labour (Civil) [2304 h]; Steel Fixer [768 h] | CCB | 3 | 821 | 2110 | TUNN | C090 |
| 821016920 |  | Vault Kicker (Ch133601 - 133301) | 48d | 2013-01-02 A | 2013-05-25 A | 821016344 FF, 821016910 | 100% | 2013-01-02 | 2013-03-01 |  | Steel Fixer [768 h]; Concrete [233 m3]; Concretor [1152 h]; Carpenter [1536 h]; Other Skill Labour (Civil) [2304 h] | CCB | 3 | 821 | 2110 | TUNN | C090 |
| 821013440 |  | Vault Kicker (Ch133301 - 133000) | 48d | 2013-05-27 A | 2013-06-14 A | 821016094 FF, 821016920 | 100% | 2013-06-15 | 2013-08-10 | mandatory start 2013-04-22 | Concrete [233 m3]; Concretor [1152 h]; Carpenter [1536 h]; Other Skill Labour (Civil) [2304 h]; Steel Fixer [768 h] | CCB | 3 | 821 | 2110 | TUNN | C090 |
|  | 2 | **Waterproofing** |  | 2012-07-10 | 2013-08-10 |  |  |  |  |  |  |  |  |  |  |  |  |
| 821017320 |  | North Waterproofing Gantry erection | 12d | 2012-07-10 A | 2012-08-18 A | 821016084 | 100% | 2012-07-10 | 2012-07-23 |  | Other Skill Labour (Civil) [544 h] | CCB | 3 | 821 | 2110 | TUNN | C090 |
| 821011230 |  | Vault Waterproofing (Ch134604 - 134518) | 34d | 2012-08-20 A | 2013-08-10 A | 821011630, 821017320 | 100% | 2013-01-07 | 2013-02-18 | mandatory finish 2012-11-24 | Cherry Picker [256 h]; Waterproof Platform [256 h]; Other Skill Labour (Civil) [1200 h]; Truck Lorry [200 h] | CCB | 2 | 821 | 2110 | TUNN | C090 |
| 821013390 |  | Vault Waterproofing (Ch134518 - 134218) | 48d | 2012-08-20 A | 2012-11-03 A | 821011230 | 100% | 2012-08-20 | 2012-10-16 | mandatory finish 2012-10-27 | Truck Lorry [512 h]; Cherry Picker [256 h]; Waterproof Platform [256 h]; Other Skill Labour (Civil) [1536 h] | CCB | 2 | 821 | 2110 | TUNN | C090 |
| 821013400 |  | Vault Waterproofing (Ch134218 - 133918) | 48d | 2012-11-05 A | 2013-01-04 A | 821013390 | 100% | 2012-11-15 | 2013-01-12 | mandatory finish 2013-01-05 | Truck Lorry [512 h]; Cherry Picker [256 h]; Waterproof Platform [256 h]; Other Skill Labour (Civil) [1536 h] | CCB | 2 | 821 | 2110 | TUNN | C090 |
| 821016930 |  | Vault Waterproofing (Ch133918 - 133618) | 48d | 2013-01-05 A | 2013-02-25 A | 821013400 | 100% | 2013-01-05 | 2013-03-05 | mandatory start 2012-12-24 | Cherry Picker [256 h]; Waterproof Platform [256 h]; Other Skill Labour (Civil) [1536 h]; Truck Lorry [512 h] | CCB | 2 | 821 | 2110 | TUNN | C090 |
| 821016940 |  | Vault Waterproofing (Ch133618 - 133318) | 48d | 2013-02-26 A | 2013-05-03 A | 821016930 | 100% | 2013-02-26 | 2013-04-26 | mandatory finish 2013-04-29 | Truck Lorry [512 h]; Cherry Picker [256 h]; Waterproof Platform [256 h]; Other Skill Labour (Civil) [1536 h] | CCB | 2 | 821 | 2110 | TUNN | C090 |
| 821013410 |  | Vault Waterproofing (Ch133318 - 133000) | 51d | 2013-05-04 A | 2013-08-01 A | 821013440 FF, 821011220 FF+10d, 821016344 FF, 821016940 | 100% | 2013-05-04 | 2013-07-05 |  | Waterproof Platform [280 h]; Truck Lorry [560 h]; Cherry Picker [280 h]; Other Skill Labour (Civil) [1632 h] | CCB | 2 | 821 | 2110 | TUNN | C090 |

Notes:
- 821011240: Problems Encountered: - Dismantle of TBM and transfer to / Nam Cheong Shaft.
- 821011230: Constraints and Assumptions: Assume 6m/day
- 821013390: Constraints and Assumptions: Assume 6m/day
- 821013400: Constraints and Assumptions: Assume 6m/day
- 821016930: Constraints and Assumptions: Assume 6m/day
- 821016940: Constraints and Assumptions: Assume 6m/day
- 821013410: Constraints and Assumptions: Assume 6m/day

| ID | WBS | Activity | Duration | Start | Finish | Predecessors | Complete | Planned start | Planned finish | Constraint | Resources | Cost Centre | Sequence | Contracts | Location | Sub-location | Phase of Works |
| --- | --- | --- | --- | --- | --- | --- | --- | --- | --- | --- | --- | --- | --- | --- | --- | --- | --- |
|  | 3 | **Vault Lining** |  | 2012-09-01 | 2013-08-15 |  |  |  |  |  |  |  |  |  |  |  |  |
| 821011250 |  | Vault lining by South linging formwork (Ch134590 - 134502) (Bay 103 - 109) | 23d | 2012-09-01 A | 2012-12-18 A | 821015410, 821011339 | 100% | 2012-09-01 | 2012-09-27 |  | Cherry Picker [248 h]; Concrete Pump Set [192 h]; Lining Formwork Platform [248 h]; Other Skill Labour (Civil) [1152 h]; Carpenter [768 h]; Concretor [576 h]; Concrete [1010 m3] | CCB | 4 | 821 | 2110 | TUNN | C090 |
| 821013940 |  | North Vault lining formwork erection | 30d | 2012-09-10 A | 2012-11-09 A | 821016830 SS+10d, 821017810 FS+7d | 100% | 2012-08-13 | 2012-09-15 |  | Other Skill Labour (Civil) [1440 h]; Plant Operator [240 h]; Crane Lorry [240 h] | CCB | 3 | 821 | 2110 | TUNN | C090 |
| 821013450 |  | Vault lining by South linging formwork (Ch134502 - 134465) (Bay 110 - 112) | 7d | 2012-09-14 A | 2012-09-22 A | 821011250 | 100% | 2012-09-14 | 2012-09-21 |  | Lining Formwork Platform [56 h]; Other Skill Labour (Civil) [336 h]; Carpenter [224 h]; Concretor [168 h]; Concrete [425 m3]; Cherry Picker [56 h]; Concrete Pump Set [56 h] | CCB | 4 | 821 | 2110 | TUNN | C090 |
| 821013460 |  | Vault lining (Ch134465 - 134165) (Bay 113 - 136) | 48d | 2012-09-23 A | 2012-11-14 A | 821015410, 821013940 FS+4d | 100% | 2012-09-24 | 2012-11-21 | mandatory finish 2012-11-21 | Concrete [3441 m3]; Cherry Picker [256 h]; Concrete Pump Set [512 h]; Lining Formwork Platform [256 h]; Other Skill Labour (Civil) [2304 h]; Carpenter [1536 h]; Concretor [1152 h] | CCB | 4 | 821 | 2110 | TUNN | C090 |
| 821016950 |  | Vault lining (Ch134165 - 133865) (Bay 137 - 160) | 48d | 2012-11-15 A | 2013-01-15 A | 821013460 | 100% | 2012-11-15 | 2013-01-12 | mandatory finish 2013-01-12 | Concrete [3441 m3]; Cherry Picker [256 h]; Concrete Pump Set [512 h]; Lining Formwork Platform [256 h]; Other Skill Labour (Civil) [2304 h]; Carpenter [1536 h]; Concretor [1152 h] | CCB | 4 | 821 | 2110 | TUNN | C090 |
| 821016960 |  | Vault lining (Ch133865 - 133565) (Bay 161 - 184) | 48d | 2013-01-16 A | 2013-03-13 A | 821016950 | 100% | 2013-01-16 | 2013-03-15 |  | Concrete [3441 m3]; Cherry Picker [256 h]; Concrete Pump Set [512 h]; Lining Formwork Platform [256 h]; Other Skill Labour (Civil) [2304 h]; Carpenter [1536 h]; Concretor [1152 h] | CCB | 4 | 821 | 2110 | TUNN | C090 |
| 821017920 |  | Vault lining (Ch133565 - 133265) (Bay 185 - 208) | 48d | 2013-03-14 A | 2013-05-27 A | 821016960, 821016344 FF+26d | 100% | 2013-03-14 | 2013-05-14 |  | Concrete [3441 m3]; Cherry Picker [256 h]; Concrete Pump Set [512 h]; Lining Formwork Platform [256 h]; Other Skill Labour (Civil) [2304 h]; Carpenter [1536 h]; Concretor [1152 h] | CCB | 4 | 821 | 2110 | TUNN | C090 |
| 821013470 |  | Vault lining (Ch133265 - 133000) (Bay 209 - 230) | 29d | 2013-05-30 A | 2013-08-11 A | 821017920 | 100% | 2013-05-28 | 2013-07-02 |  | Concrete [3040 m3]; Cherry Picker [280 h]; Concrete Pump Set [344 h]; Lining Formwork Platform [280 h]; Other Skill Labour (Civil) [2064 h]; Carpenter [1376 h]; Concretor [1032 h] | CCB | 4 | 821 | 2110 | TUNN | C090 |
| 821013945 |  | Dismantle Vault lining formwork at North Tunnels | 9d | 2013-08-12 A | 2013-08-15 A | 821013470, 821013410 FF | 100% | 2013-08-12 | 2013-08-21 | mandatory start 2013-08-10 | Other Skill Labour (Civil) [528 h]; Plant Operator [88 h]; Crane Lorry [88 h] | CCB |  | 821 | 2110 | TUNN | C090 |
|  | 5 | **Dividing Wall** |  | 2012-12-03 | 2013-10-03 |  |  |  |  |  |  |  |  |  |  |  |  |
| 821011266 |  | North Partition Wall formwork erection | 22d | 2012-12-03 A | 2013-01-19 A | 821017340 SS | 100% | 2012-12-03 | 2012-12-29 | mandatory start 2012-12-03 | Crane Lorry [192 h]; Other Skill Labour (Civil) [1056 h]; Plant Operator [192 h] | CCB |  | 821 | 2110 | TUNN | C090 |
| 821017340 |  | North reinforcement Gantry erection | 22d | 2012-12-03 A | 2013-01-19 A | 821013940 FS+12d | 100% | 2012-12-03 | 2012-12-29 | mandatory start 2012-12-03 | Other Skill Labour (Civil) [1056 h]; Plant Operator [192 h]; Crane Lorry [192 h] | CCB |  | 821 | 2110 | TUNS | C090 |
| 821011325 |  | Central walkway (Ch134510 - 134270) | 40d | 2013-01-14 A | 2013-03-28 A | 821011295 | 100% | 2013-01-14 | 2013-03-04 |  | Concrete [1416 m3]; Steel Fixer [528 h]; Carpenter [640 h]; Concretor [792 h]; Other Skill Labour (Civil) [1280 h] | CCB | 1 | 821 | 2110 | TUNN | C090 |
| 821011305 |  | Central concrete filling (Ch134510 - 134270) | 40d | 2013-01-18 A | 2013-03-30 A | 821011285 | 100% | 2013-01-18 | 2013-03-08 |  | Concretor [792 h]; Other Skill Labour (Civil) [1280 h]; Concrete | CCB | 2 | 821 | 2110 | TUNN | C090 |
| 821013490 |  | Partition wall (Ch134510 - 134270) | 40d | 2013-01-28 A | 2013-04-19 A | 821011270 | 100% | 2013-01-28 | 2013-03-18 |  | Concrete [850 m3]; Concrete Pump Set [264 h]; Steel Fixer [528 h]; Carpenter [640 h]; Concretor [792 h]; Other Skill Labour (Civil) [1280 h] | CCB |  | 821 | 2110 | TUNN | C090 |
| 821011315 |  | Central concrete filling (Ch134270 - 133928) (Bay 128 -155) | 57d | 2013-02-07 A | 2013-03-30 A | 821011305 | 100% | 2013-02-07 | 2013-04-22 |  | Other Skill Labour (Civil) [1824 h]; Concretor [792 h]; Concrete | CCB | 2 | 821 | 2110 | TUNN | C090 |
| 821011275 |  | Central walkway (Ch134270 - 133928) (Bay 128 -155) | 57d | 2013-02-16 A | 2013-03-29 A | 821011325 | 100% | 2013-02-16 | 2013-04-27 | mandatory finish 2013-03-30 | Concrete [2018 m3]; Other Skill Labour (Civil) [1824 h]; Concretor [792 h]; Carpenter [1056 h]; Steel Fixer [912 h] | CCB | 1 | 821 | 2110 | TUNN | C090 |
| 821015910 |  | Partition wall (Ch134270 - 133928) (Bay 128 -155) | 27d | 2013-03-01 A | 2013-04-12 A | 821016344 FF+5d, 821013490 | 100% | 2013-03-01 | 2013-04-05 | mandatory finish 2013-04-06 | Steel Fixer [912 h]; Carpenter [1056 h]; Concretor [792 h]; Other Skill Labour (Civil) [1824 h]; Concrete [1211 m3]; Concrete Pump Set [456 h] | CCB |  | 821 | 2110 | TUNN | C090 |
| 821017350 |  | Central walkway (Ch133928 - 133448) (Bay 156 -194) | 40d | 2013-03-30 A | 2013-07-08 A | 821011275 | 100% | 2013-04-02 | 2013-05-21 | mandatory finish 2013-07-06 | Concrete [2832 m3]; Other Skill Labour (Civil) [1280 h]; Concretor [792 h]; Carpenter [640 h]; Steel Fixer [528 h] | CCB | 1 | 821 | 2110 | TUNN | C090 |
| 821017370 |  | Central concrete filling (Ch133928 - 133448) (Bay 156 -194) | 40d | 2013-04-01 A | 2013-07-11 A | 821011315 | 100% | 2013-04-02 | 2013-05-21 | mandatory finish 2013-07-10 | Concretor [792 h]; Other Skill Labour (Civil) [1280 h]; Concrete | CCB | 2 | 821 | 2110 | TUNN | C090 |
| 821017390 |  | Partition wall (Ch133928 - 133448) (Bay 156 -194) | 40d | 2013-04-13 A | 2013-07-26 A | 821015910 | 100% | 2013-04-13 | 2013-05-31 | mandatory finish 2013-07-17 | Concrete [1699 m3]; Concrete Pump Set [176 h]; Steel Fixer [528 h]; Carpenter [640 h]; Concretor [792 h]; Other Skill Labour (Civil) [1280 h] | CCB |  | 821 | 2110 | TUNN | C090 |
| 821011295 |  | Central walkway (Ch134578.8 - 134510) (Bay 104 - 108) | 18d | 2013-04-15 A | 2013-05-06 A | 821011266 FS-1d | 100% |  |  |  | Concrete [406 m3]; Carpenter [288 h]; Concretor [288 h]; Other Skill Labour (Civil) [576 h]; Steel Fixer [288 h] | CCB | 1 | 821 | 2110 | TUNN | C090 |
| 821011285 |  | Central concrete filling (Ch134578.8 - 134510) (Bay 104 - 108) | 18d | 2013-04-16 A | 2013-05-07 A | 821011295 SS+3d | 100% |  |  |  | Concretor [288 h]; Other Skill Labour (Civil) [576 h]; Concrete | CCB | 2 | 821 | 2110 | TUNN | C090 |
| 821011270 |  | Partition wall (Ch134578.8 - 134510) (Bay 104 - 108) | 18d | 2013-04-25 A | 2013-05-09 A | 821011285 SS+3d, 821011266, 821017340 | 100% | 2013-04-25 | 2013-05-16 |  | Concrete [244 m3]; Rebar; Concrete Pump Set [144 h]; Steel Fixer [288 h]; Carpenter [288 h]; Concretor [288 h]; Other Skill Labour (Civil) [576 h] | CCB |  | 821 | 2110 | TUNN | C090 |
| 821017360 |  | Central walkway (Ch133448 - 133000) (Bay 195 - 230) | 34d | 2013-07-09 A | 2013-08-29 A | 821017350 | 100% | 2013-07-09 | 2013-08-16 | mandatory finish 2013-08-24 | Concrete [2644 m3]; Other Skill Labour (Civil) [1216 h]; Concretor [504 h]; Steel Fixer [608 h]; Carpenter [672 h] | CCB | 1 | 821 | 2110 | TUNN | C090 |
| 821017380 |  | Central concrete filling (Ch133448 - 133000) (Bay 195 - 230) | 33d | 2013-07-12 A | 2013-09-28 A | 821017370 | 100% | 2013-07-12 | 2013-08-19 | mandatory finish 2013-09-07 | Concretor [528 h]; Other Skill Labour (Civil) [1216 h]; Concrete | CCB | 2 | 821 | 2110 | TUNN | C090 |
| 821017400 |  | Partition wall (Ch133448 - 133000) (Bay 195 - 230) | 35d | 2013-07-27 A | 2013-10-03 A | 821013945 FF, 821017390 | 100% | 2013-07-27 | 2013-09-05 | mandatory finish 2013-09-14 | Concrete; Concrete Pump Set; Steel Fixer; Carpenter; Concretor; Other Skill Labour (Civil) | CCB |  | 821 | 2110 | TUNN | C090 |

| ID | WBS | Activity | Duration | Start | Finish | Predecessors | Complete | Planned start | Planned finish | Constraint | Resources | Cost Centre | Contracts | Location | Sub-location | Phase of Works | Sequence |
| --- | --- | --- | --- | --- | --- | --- | --- | --- | --- | --- | --- | --- | --- | --- | --- | --- | --- |
|  | 6 | **Walkway** |  | 2013-05-27 | 2013-11-23 |  |  |  |  |  |  |  |  |  |  |  |  |
| 821011770 |  | Erect formwork (North) | 7d | 2013-05-27 A | 2013-06-01 A | 821012110 | 100% | 2013-05-27 | 2013-06-03 |  | Other Skill Labour (Civil) [112 h]; Carpenter [56 h]; Forklift [56 h] | CCB | 821 | 2110 | TUNN | C090 |  |
| 821011280 |  | North Type 1 Precast sides walkway (Ch134644.7 - 133000) | 23d | 2013-06-03 A | 2013-11-23 A | 821012110, 821011770 | 100% | 2013-06-03 | 2013-06-29 | mandatory finish 2013-10-31 | Plant Operator [184 h]; Other Skill Labour (Civil) [736 h]; Forklift [264 h] | CCB | 821 | 2110 | TUNN | C090 |  |
| 821011740 |  | Concrete filling (North) | 23d | 2013-06-07 A | 2013-11-23 A | 821011280 SS+3d, 821017400 FF | 100% | 2013-06-07 | 2013-07-05 | mandatory start 2013-10-02 | Other Skill Labour (Civil) [528 h]; Concretor [792 h] | CCB | 821 | 2110 | TUNN | C090 |  |
|  | 7 | **Miscellaneous** |  | 2013-04-08 | 2013-09-28 |  |  |  |  |  |  |  |  |  |  |  |  |
| 821012090 |  | Construction of foul water pit (Ch133371.9) | 25d | 2013-04-08 A | 2013-06-29 A | 821011220, 821013490 FS+31d, 821017300 SS+5d | 100% | 2013-04-08 | 2013-05-07 | mandatory finish 2013-05-31 | Concretor [864 h]; Concrete [201.6 m3]; Rebar; Excavation - Soft [1360 m3]; Steel Fixer [576 h]; Carpenter [864 h] | CCB | 821 | 2110 | TUNN | C090 |  |
| 821012100 |  | Construction of ground water pit (Ch133371.9) | 24d | 2013-04-08 A | 2013-06-29 A | 821011220, 821012090 | 100% | 2013-04-08 | 2013-05-06 | mandatory finish 2013-06-29 | Concretor [768 h]; Concrete [201.6 m3]; Rebar; Excavation - Soft [2102 m3]; Steel Fixer [576 h]; Carpenter [768 h] | CCB | 821 | 2110 | TUNN | C090 |  |
| 821013990 |  | Degree 1 Works - North Tunnel | 32d | 2013-08-01 A | 2013-08-28 A | 821012950 FS+11d, 821011740 FF | 100% | 2013-08-01 | 2013-09-06 | mandatory start 2013-06-13 | Other Skill Labour (Civil) [1536 h] | CCB | 821 | 2110 | TUNN | C090 |  |
| 821012960 |  | Steel and metalworks for the pits | 7d | 2013-09-02 A | 2013-09-09 A | 821012950 | 100% |  |  | mandatory start 2013-05-30 | Metal worker [280 h] | CCB | 821 | 2110 | TUNN | C090 |  |
| 821012970 |  | Finishes and waterproofing and all accessories & ancillaries for the pits | 14d | 2013-09-10 A | 2013-09-26 A | 821011630, 821012960 | 100% |  |  | mandatory start 2013-06-08 | Other Skill Labour (Civil) [224 h]; Plasterer [672 h] | CCB | 821 | 2110 | TUNN | C090 |  |
| 821012950 |  | Pipework and fitting for the pits | 15d | 2013-09-11 A | 2013-09-28 A | 821012100 | 100% |  |  |  | Plumber [480 h] | CCB | 821 | 2110 | TUNN | C090 |  |
|  | 2 | **South Twin Track Tunnel** |  | 2011-10-20 | 2014-05-24 |  |  |  |  |  |  |  |  |  |  |  |  |
|  | 1 | **Excavation** |  | 2011-10-20 | 2013-11-03 |  |  |  |  |  |  |  |  |  |  |  |  |
| 821016074 |  | Construct temporary by-pass tunnel (South) | 11d | 2011-10-20 A | 2011-11-03 A | 821012980 | 100% | 2011-10-20 | 2011-11-01 |  | Excavation - Hard [4140 m3]; Plant Operator [1232 h]; Welder [176 h]; Explosive Truck Driver [176 h]; Drilling Jumbo [176 h]; Truck Lorry [88 h]; Loader [88 h]; Tower Crane [88 h]; Dump Truck [440 h]; Cherry Picker [88 h]; Backhoe [88 h]; Backhoe with Breaker [88 h]; Mechanic [176 h]; Electrician [176 h]; Ganger [176 h]; Shortfirer [352 h]; Miner [352 h]; Other Skill Labour (Civil) [528 h] | CCB | 821 | 2110 | TUNS | C090 | 1 |
| 821016810 |  | Twin track tunnel drill & blast Ch134644.7 - Ch134679 (34.3m) | 14d | 2011-11-04 A | 2011-11-18 A | 821011873, 821016074, 821013095, 821011133 | 100% | 2011-11-04 | 2011-11-19 |  | Excavation - Hard [4764 m3]; Backhoe [112 h]; Backhoe with Breaker [112 h]; Loader [112 h]; Truck Lorry [112 h]; Cherry Picker [112 h]; Shotcrete Set [112 h]; Other Skill Labour (Civil) [672 h]; Shortfirer [448 h]; Ganger [224 h]; Electrician [224 h]; Mechanic [224 h]; Plant Operator [1568 h]; Drilling Jumbo [224 h]; Welder [224 h]; Explosive Truck Driver [112 h]; Miner [448 h]; Dump Truck [560 h] | CCB | 821 | 2110 | TUNS | C090 | 1 |
| 821011310 |  | Twin track tunnel drill & blast Ch134679 - Ch134979 (300m) | 57d | 2011-11-19 A | 2012-01-31 A | 821016810 | 100% |  |  |  | Excavation - Hard [41664 m3]; Backhoe [416 h]; Backhoe with Breaker [416 h]; Loader [416 h]; Truck Lorry [440 h]; Cherry Picker [416 h]; Shotcrete Set [416 h]; Other Skill Labour (Civil) [2640 h]; Shortfirer [1760 h]; Ganger [880 h]; Electrician [880 h]; Mechanic [880 h]; Plant Operator [6384 h]; Drilling Jumbo [880 h]; Welder [912 h]; Explosive Truck Driver [416 h]; Miner [1760 h]; Dump Truck [2280 h] | CCB | 821 | 2110 | TUNS | C090 | 1 |
| 821012470 |  | Twin track tunnel drill & blast Ch134979 - Ch135279 (300m) | 57d | 2012-02-01 A | 2012-04-21 A | 821011310 | 100% | 2012-02-01 | 2012-04-11 |  | Truck Lorry [440 h]; Cherry Picker [520 h]; Shotcrete Set [520 h]; Other Skill Labour (Civil) [2640 h]; Shortfirer [1760 h]; Ganger [880 h]; Electrician [880 h]; Mechanic [880 h]; Miner [1760 h]; Dump Truck [2280 h]; Plant Operator [6384 h]; Drilling Jumbo [880 h]; Welder [912 h]; Explosive Truck Driver [456 h]; Excavation - Hard [41664 m3]; Backhoe [520 h]; Backhoe with Breaker [520 h]; Loader [520 h] | CCB | 821 | 2110 | TUNS | C090 | 1 |
| 821012480 |  | Twin track tunnel drill & blast Ch135279 - Ch135521 (242m) | 46d | 2012-04-21 A | 2012-06-15 A | 821012470 | 100% |  |  |  | Dump Truck [1840 h]; Miner [1472 h]; Excavation - Hard [33609 m3]; Backhoe [448 h]; Backhoe with Breaker [448 h]; Loader [448 h]; Truck Lorry [504 h]; Cherry Picker [448 h]; Shotcrete Set [448 h]; Other Skill Labour (Civil) [2208 h]; Shortfirer [1472 h]; Ganger [736 h]; Electrician [736 h]; Mechanic [736 h]; Plant Operator [5152 h]; Drilling Jumbo [736 h]; Welder [896 h]; Explosive Truck Driver [448 h] | CCB | 821 | 2110 | TUNS | C090 | 1 |
| 821012320 |  | Twin track tunnel drill & blast Ch135521- Ch135614 (93m) | 18d | 2012-06-15 A | 2012-07-23 A | 821015440, 821013145, 821014650, 821012480 | 100% | 2012-06-15 | 2012-07-07 |  | Dump Truck [720 h]; Excavation - Hard [12916 m3]; Backhoe [208 h]; Backhoe with Breaker [208 h]; Loader [208 h]; Truck Lorry [208 h]; Cherry Picker [208 h]; Shotcrete Set [208 h]; Other Skill Labour (Civil) [864 h]; Shortfirer [576 h]; Ganger [288 h]; Electrician [416 h]; Mechanic [288 h]; Plant Operator [2016 h]; Drilling Jumbo [288 h]; Welder [288 h]; Explosive Truck Driver [208 h]; Miner [576 h] | CCB | 821 | 2110 | TUNS | C090 | 1 |
| 821017160 |  | Twin track tunnel drill & blast Ch135614 - Ch135679 (65m) | 22d | 2012-07-23 A | 2012-08-06 A | 821012320 | 100% | 2013-07-23 | 2013-08-16 |  | Other Skill Labour (Civil) [1056 h]; Shortfirer [704 h]; Ganger [416 h]; Electrician [416 h]; Mechanic [416 h]; Plant Operator [2464 h]; Drilling Jumbo [416 h]; Welder [352 h]; Explosive Truck Driver [176 h]; Miner [704 h]; Dump Truck [880 h]; Excavation - Hard [9027 m3]; Backhoe [208 h]; Backhoe with Breaker [208 h]; Loader [208 h]; Truck Lorry [208 h]; Cherry Picker [208 h]; Shotcrete Set [208 h] | CCB | 821 | 2110 | TUNS | C090 | 1 |
| 821017170 |  | Twin track tunnel drill & blast Ch135679 - Ch135712 (33m) | 12d | 2012-08-06 A | 2012-08-25 A | 821017160 | 100% | 2012-08-06 | 2012-08-18 | mandatory start 2012-08-17 | Backhoe with Breaker [96 h]; Loader [96 h]; Truck Lorry [96 h]; Cherry Picker [96 h]; Shotcrete Set [96 h]; Other Skill Labour (Civil) [576 h]; Shortfirer [384 h]; Ganger [192 h]; Electrician [192 h]; Mechanic [192 h]; Plant Operator [1344 h]; Drilling Jumbo [192 h]; Welder [208 h]; Explosive Truck Driver [96 h]; Miner [384 h]; Dump Truck [480 h]; Excavation - Hard [4583 m3]; Backhoe [96 h] | CCB | 821 | 2110 | TUNS | C090 | 1 |
| 821016114 |  | Bifurcation track tunnel drill & blast Ch135712 - Ch135737 (25m) | 25d | 2012-08-25 A | 2012-09-07 A | 821017170 | 100% | 2012-08-25 | 2012-09-22 | mandatory finish 2012-09-24 | Dump Truck [1000 h]; Miner [800 h]; Excavation - Hard [3472 m3]; Backhoe [256 h]; Backhoe with Breaker [256 h]; Loader [256 h]; Truck Lorry [256 h]; Cherry Picker [256 h]; Shotcrete Set [256 h]; Other Skill Labour (Civil) [1200 h]; Shortfirer [800 h]; Ganger [400 h]; Electrician [400 h]; Mechanic [400 h]; Plant Operator [2800 h]; Drilling Jumbo [400 h]; Welder [400 h]; Explosive Truck Driver [256 h] | CCB | 821 | 2110 | TUNS | C090 | 1 |
| 821016620 |  | TBM Cavern preparation for breakthrough | 24d | 2012-09-08 A | 2012-11-10 A | 821016114 | 100% | 2012-09-10 | 2012-10-09 | mandatory finish 2012-11-10 | Shotcrete Set [192 h]; Other Skill Labour (Civil) [1152 h]; Shortfirer [768 h]; Ganger [384 h]; Tunneller [192 h]; Electrician [384 h]; Mechanic [384 h]; Plant Operator [2688 h]; Welder [192 h]; Dump Truck [384 h]; Miner [768 h]; Backhoe [192 h]; Backhoe with Breaker [192 h]; Loader [192 h]; Truck Lorry [192 h]; Cherry Picker [192 h] | CCB | 821 | 2110 | TUNS | C090 | 1 |
| 821017330 |  | TBM Cavern concreting works | 59d | 2013-04-08 A | 2013-11-03 A | 821013530, 821016620 | 100% | 2013-04-08 | 2013-06-18 | mandatory finish 2013-11-03 | Plant Operator [5600 h]; Welder [256 h]; Explosive Truck Driver [400 h]; Dump Truck [2400 h]; Miner [1600 h]; Backhoe [400 h]; Backhoe with Breaker [400 h]; Loader [400 h]; Truck Lorry [256 h]; Cherry Picker [400 h]; Concretor [800 h]; Shotcrete Set [256 h]; Other Skill Labour (Civil) [1600 h]; Ganger [400 h]; Electrician [800 h]; Mechanic [800 h] | CCB | 821 | 2110 | TUNS | C090 | 1 |

Notes:
- 821012480: Recent Highlights: TBM further / extension will be / decided at D&B south tunnel Ch135+486 on 29-May-12.
- 821016114: Description-proj: "Enlarged Drill and Blast Chamber for Alternative" / 821011510 deleted.

| ID | WBS | Activity | Duration | Start | Finish | Predecessors | Complete | Planned start | Planned finish | Constraint | Resources | Cost Centre | Sequence | Contracts | Location | Sub-location | Phase of Works |
| --- | --- | --- | --- | --- | --- | --- | --- | --- | --- | --- | --- | --- | --- | --- | --- | --- | --- |
|  | 4 | **Drainage & Invert** |  | 2012-04-16 | 2013-08-19 |  |  |  |  |  |  |  |  |  |  |  |  |
| 821011360 |  | Drainage system & invert slab (Ch134644.7 - 134814.7) | 25d | 2012-04-16 A | 2012-09-01 A | 821013215, 821015380, 821012470 FS+11d | 100% | 2012-04-26 | 2012-05-26 | mandatory finish 2012-09-01 | Concrete [1285 m3]; Carpenter [200 h]; Concretor [400 h]; Other Skill Labour (Civil) [600 h]; Drainlayer [800 h] | CCB | 5 | 821 | 2110 | TUNS | C090 |
| 821012600 |  | Drainage system & invert slab (Ch134814.7 - 134984.7) | 25d | 2012-04-26 A | 2012-06-30 A | 821011360 | 100% | 2012-05-21 | 2012-06-18 | as late as possible | Concrete [1285 m3]; Carpenter [200 h]; Concretor [400 h]; Other Skill Labour (Civil) [600 h]; Drainlayer [800 h] | CCB | 5 | 821 | 2110 | TUNS | C090 |
| 821012610 |  | Drainage system & invert slab (Ch134984.7 - 135154.7) | 25d | 2012-05-21 A | 2012-08-12 A | 821012470, 821012600 | 100% | 2012-05-21 | 2012-06-18 |  | Concrete [1285 m3]; Concretor [400 h]; Carpenter [200 h]; Other Skill Labour (Civil) [600 h]; Drainlayer [800 h] | CCB | 5 | 821 | 2110 | TUNS | C090 |
| 821016124 |  | Drainage system & invert slab (Ch135154.7 - 135324.7) | 25d | 2012-09-03 A | 2012-09-08 A | 821012610 | 100% | 2012-09-03 | 2012-10-03 |  | Carpenter [200 h]; Other Skill Labour (Civil) [600 h]; Drainlayer [800 h]; Concrete [1285 m3]; Concretor [400 h] | CCB | 5 | 821 | 2110 | TUNS | C090 |
| 821016134 |  | Drainage system & invert slab (Ch135324.7 - 135472) | 22d | 2012-09-10 A | 2012-11-03 A | 821016124 | 100% | 2012-09-10 | 2012-10-06 | mandatory finish 2012-10-20 | Other Skill Labour (Civil) [528 h]; Drainlayer [704 h]; Concrete [1113 m3]; Concretor [352 h]; Carpenter [176 h] | CCB | 5 | 821 | 2110 | TUNS | C090 |
| 821016144 |  | Drainage system & invert slab (Ch135472 - 135737) | 31d | 2012-10-22 A | 2013-08-19 A | 821016134, 821017170 | 100% | 2012-10-22 | 2012-11-27 | mandatory finish 2013-06-22 | Other Skill Labour (Civil) [744 h]; Concretor [496 h]; Concrete [2003 m3]; Drainlayer [992 h]; Carpenter [248 h] | CCB | 5 | 821 | 2110 | TUNS | C090 |
|  | 8 | **Kicker** |  | 2012-03-07 | 2013-05-18 |  |  |  |  |  |  |  |  |  |  |  |  |
| 821012530 |  | Vault Kicker (Ch134747 - 135047) | 48d | 2012-03-07 A | 2013-03-08 A | 821011340 | 100% | 2013-03-07 | 2013-05-07 | mandatory finish 2012-10-20 | Concrete [233 m3]; Other Skill Labour (Civil) [2304 h]; Carpenter [1536 h]; Concretor [1152 h]; Steel Fixer [768 h] | CCB | 3 | 821 | 2110 | TUNS | C090 |
| 821011340 |  | Vault Kicker (Ch134644.7 - 134747) | 30d | 2012-03-10 A | 2013-04-13 A | 821012600 | 100% | 2012-03-10 | 2012-04-18 | mandatory finish 2012-10-15 | Concrete [80 m3]; Other Skill Labour (Civil) [1440 h]; Carpenter [960 h]; Concretor [720 h]; Steel Fixer [480 h] | CCB | 3 | 821 | 2110 | TUNS | C090 |
| 821016850 |  | Vault Kicker (Ch135047 - 135347) | 48d | 2012-05-28 A | 2013-03-28 A | 821012530 | 100% | 2012-05-28 | 2012-07-24 | mandatory finish 2013-05-04 | Other Skill Labour (Civil) [2304 h]; Carpenter [1536 h]; Concretor [1152 h]; Steel Fixer [768 h]; Concrete [233 m3] | CCB | 3 | 821 | 2110 | TUNS | C090 |
| 821017190 |  | Vault Kicker (Ch135347 - 135547) | 32d | 2012-09-04 A | 2013-03-15 A | 821016850 | 100% | 2012-09-04 | 2012-10-12 | mandatory finish 2013-04-20 | Concrete [156 m3]; Other Skill Labour (Civil) [1536 h]; Carpenter [1024 h]; Concretor [768 h]; Steel Fixer [512 h] | CCB | 3 | 821 | 2110 | TUNS | C090 |
| 821012540 |  | Vault Kicker (Ch135547 - 135712) | 29d | 2012-10-18 A | 2013-05-18 A | 821016144, 821017190 | 100% | 2012-10-18 | 2012-11-21 | mandatory finish 2013-05-31 | Concrete [156 m3]; Other Skill Labour (Civil) [1440 h]; Carpenter [960 h]; Concretor [720 h]; Steel Fixer [480 h] | CCB | 3 | 821 | 2110 | TUNS | C090 |
|  | 2 | **Waterproofing** |  | 2012-09-19 | 2013-07-27 |  |  |  |  |  |  |  |  |  |  |  |  |
| 821017180 |  | South Waterproofing Gantry erection | 12d | 2012-09-19 A | 2012-09-29 A | 821012610 FS+4d, 821011339 SS | 100% | 2012-09-19 | 2012-10-04 |  | Other Skill Labour (Civil) [576 h]; Plant Operator [96 h]; Crane Lorry [96 h] | CCB | 3 | 821 | 2110 | TUNS | C090 |
| 821011330 |  | Vault Waterproofing (Ch134644.7 - 134730) | 14d | 2012-12-24 A | 2013-01-15 A | 821017180 FS+1d | 100% | 2012-12-24 | 2013-01-11 | mandatory finish 2013-02-06 | Truck Lorry [112 h]; Cherry Picker [112 h]; Waterproof Platform [112 h]; Other Skill Labour (Civil) [448 h] | CCB | 2 | 821 | 2110 | TUNS | C090 |
| 821012490 |  | Vault Waterproofing (Ch134730 - 135030) | 48d | 2013-01-16 A | 2013-03-13 A | 821011330 | 100% | 2013-01-16 | 2013-03-15 | mandatory start 2013-03-13 | Other Skill Labour (Civil) [1536 h]; Cherry Picker [384 h]; Waterproof Platform [384 h]; Truck Lorry [384 h] | CCB | 2 | 821 | 2110 | TUNS | C090 |
| 821016840 |  | Vault Waterproofing (Ch135030 - 135330) (Bay 33 - 56) | 48d | 2013-03-14 A | 2013-05-25 A | 821012490 | 100% | 2013-03-14 | 2013-05-14 | mandatory start 2013-05-06 | Other Skill Labour (Civil) [1536 h]; Cherry Picker [384 h]; Waterproof Platform [384 h]; Truck Lorry [384 h] | CCB | 2 | 821 | 2110 | TUNS | C090 |
| 821017200 |  | Vault Waterproofing (Ch135330 - 135547) | 35d | 2013-05-27 A | 2013-07-08 A | 821016840 | 100% |  |  | mandatory start 2013-05-07 | Cherry Picker [280 h]; Waterproof Platform [280 h]; Truck Lorry [280 h]; Other Skill Labour (Civil) [1120 h] | CCB | 2 | 821 | 2110 | TUNS | C090 |
| 821012520 |  | Vault Waterproofing (Ch135547 - 135712) | 27d | 2013-07-09 A | 2013-07-27 A | 821012540 FF, 821017200 | 100% | 2013-07-09 | 2013-08-08 | mandatory start 2013-06-19 | Other Skill Labour (Civil) [864 h]; Truck Lorry [168 h]; Cherry Picker [168 h]; Waterproof Platform [240 h] | CCB | 2 | 821 | 2110 | TUNS | C090 |
|  | 3 | **Vault Lining** |  | 2012-07-09 | 2013-09-21 |  |  |  |  |  |  |  |  |  |  |  |  |
| 821011339 |  | South Vault lining formwork erection | 29d | 2012-07-09 A | 2012-08-31 A | 821010850, 821012480 SS+18d | 100% | 2012-07-09 | 2012-08-10 |  | Other Skill Labour (Civil) [1392 h]; Crane Lorry [232 h]; Plant Operator [232 h] | CCB | 3 | 821 | 2110 | TUNS | C090 |
| 821011350 |  | Vault Lining (Ch134590 - 134722) (Bay 102-101 & Bay 1-7) | 29d | 2012-12-10 A | 2013-01-19 A | 821013940, 821015410, 821011330 SS+2d, 821011340, 821013450 FS+4d | 100% | 2012-12-10 | 2013-01-15 | mandatory finish 2013-01-12 | Concrete [1514 m3]; Cherry Picker [192 h]; Concrete Pump Set [192 h]; Lining Formwork Platform [192 h]; Other Skill Labour (Civil) [1392 h]; Carpenter [928 h]; Concretor [696 h] | CCB | 4 | 821 | 2110 | TUNS | C090 |
| 821012550 |  | Vault Lining (Ch134722 - 135022) (Bay 8-31) | 48d | 2013-01-20 A | 2013-03-19 A | 821011350 | 100% | 2013-01-21 | 2013-03-20 | mandatory finish 2013-03-19 | Carpenter [1536 h]; Concretor [1152 h]; Concrete [3441 m3]; Cherry Picker [384 h]; Concrete Pump Set [480 h]; Lining Formwork Platform [384 h]; Other Skill Labour (Civil) [2304 h] | CCB | 4 | 821 | 2110 | TUNS | C090 |
| 821016860 |  | Vault Lining (Ch135022 - 135322) (Bay 32-55) | 48d | 2013-03-20 A | 2013-05-30 A | 821012550 | 100% | 2013-03-20 | 2013-05-21 | mandatory finish 2013-05-23 | Other Skill Labour (Civil) [2304 h]; Carpenter [1536 h]; Concretor [1152 h]; Concrete [3440.7 m3]; Cherry Picker [384 h]; Concrete Pump Set [488 h]; Lining Formwork Platform [384 h] | CCB | 4 | 821 | 2110 | TUNS | C090 |
| 821017930 |  | Vault Lining (Ch135322 - 135497) (Bay 56-68) | 28d | 2013-06-01 A | 2013-06-27 A | 821016860 | 100% | 2013-06-01 | 2013-07-05 | mandatory start 2013-05-24 | Carpenter [896 h]; Concretor [672 h]; Concrete [2008 m3]; Cherry Picker [224 h]; Concrete Pump Set [224 h]; Lining Formwork Platform [224 h]; Other Skill Labour (Civil) [1344 h] | CCB | 4 | 821 | 2110 | TUNS | C090 |
| 821011349 |  | Formwork enlargement: 0.58m from135497 - 135614 | 6d | 2013-06-28 A | 2013-06-30 A | 821017930, 821012520 | 100% | 2013-06-28 | 2013-07-05 | mandatory start 2013-06-27 | Other Skill Labour (Civil) [288 h]; Plant Operator [88 h]; Crane Lorry [88 h] | CCB | 5 | 821 | 2110 | TUNS | C090 |
| 821012580 |  | Vault Lining (Ch135497 - 135614, Enlarged section) (Bay 69 - 79) | 17d | 2013-07-02 A | 2013-07-31 A | 821015440, 821011349 | 100% | 2013-07-02 | 2013-07-20 | mandatory start 2013-07-01 | Concrete [1342 m3]; Cherry Picker [136 h]; Concrete Pump Set [136 h]; Lining Formwork Platform [136 h]; Other Skill Labour (Civil) [816 h]; Carpenter [544 h]; Concretor [408 h] | CCB | 5 | 821 | 2110 | TUNS | C090 |
| 821016870 |  | Formwork enlargement: 1.775m from 135614 to 135679 | 3d | 2013-08-01 A | 2013-08-10 A | 821012580 | 100% | 2013-08-01 | 2013-08-03 | mandatory start 2013-08-01 | Other Skill Labour (Civil) [336 h]; Crane Lorry [112 h]; Plant Operator [112 h] | CCB | 5 | 821 | 2110 | TUNS | C090 |
| 821016880 |  | Vault Lining (Ch135614 - 135679, Enlarged section) (Bay 80 - 85) | 10d | 2013-08-12 A | 2013-08-23 A | 821016870 | 100% | 2013-08-12 | 2013-08-22 |  | Cherry Picker [88 h]; Concrete Pump Set [88 h]; Lining Formwork Platform [88 h]; Other Skill Labour (Civil) [480 h]; Carpenter [352 h]; Concretor [264 h]; Concrete [746 m3] | CCB | 5 | 821 | 2110 | TUNS | C090 |
| 821016890 |  | Formwork enlargement: 3.550m from 135679 - 135712 | 8d | 2013-08-24 A | 2013-08-30 A | 821016880 | 100% | 2013-08-24 | 2013-09-02 |  | Other Skill Labour (Civil) [384 h]; Crane Lorry [128 h]; Plant Operator [128 h] | CCB | 5 | 821 | 2110 | TUNS | C090 |
| 821016900 |  | Vault Lining (Ch135679 - 135712, Enlarged section) (Bay 86 - 87) | 4d | 2013-09-02 A | 2013-09-18 A | 821016890, 821012520 FF | 100% | 2013-09-02 | 2013-09-05 | mandatory start 2013-08-31 | Concrete [379 m3]; Cherry Picker [32 h]; Concrete Pump Set [32 h]; Lining Formwork Platform [32 h]; Other Skill Labour (Civil) [192 h]; Carpenter [128 h]; Concretor [96 h] | CCB | 5 | 821 | 2110 | TUNS | C090 |
| 821012585 |  | Dismantle Vault lining formwork at South Tunnels | 12d | 2013-09-19 A | 2013-09-21 A | 821016900 | 100% | 2013-09-19 | 2013-10-04 |  | Other Skill Labour (Civil) [576 h]; Plant Operator [96 h]; Crane Lorry [96 h] | CCB | 5 | 821 | 2110 | TUNS | C090 |

| ID | WBS | Activity | Duration | Start | Finish | Predecessors | Complete | Planned start | Planned finish | Constraint | Resources | Cost Centre | Contracts | Location | Sub-location | Phase of Works | Sequence |
| --- | --- | --- | --- | --- | --- | --- | --- | --- | --- | --- | --- | --- | --- | --- | --- | --- | --- |
|  | 5 | **Dividing Wall** |  | 2013-02-19 | 2013-10-20 |  |  |  |  |  |  |  |  |  |  |  |  |
| 821011385 |  | South reinforcement Gantry erection | 23d | 2013-02-19 A | 2013-03-14 A | 821011339, 821017340 | 100% | 2013-02-19 | 2013-03-16 | mandatory finish 2013-03-16 | Crane Lorry [192 h]; Plant Operator [192 h]; Other Skill Labour (Civil) [1152 h] | CCB | 821 | 2110 | TUNS | C090 |  |
| 821017210 |  | South Partition Wall formwork erection | 23d | 2013-02-19 A | 2013-03-14 A | 821011385 SS | 100% | 2013-02-19 | 2013-03-16 | mandatory finish 2013-03-16 | Other Skill Labour (Civil) [1152 h]; Plant Operator [192 h]; Crane Lorry [192 h] | CCB | 821 | 2110 | TUNS | C090 |  |
| 821011335 |  | Central walkway (Ch134670.7 - 134814.7) (Bay 4 - 15) | 24d | 2013-03-21 A | 2013-05-21 A | 821016144, 821017210 FS-6d | 100% | 2013-03-21 | 2013-04-22 | mandatory finish 2013-05-04 | Concrete [850 m3]; Other Skill Labour (Civil) [768 h]; Steel Fixer [288 h]; Concretor [432 h]; Carpenter [384 h] | CCB | 821 | 2110 | TUNS | C090 | 1 |
| 821011365 |  | Central concrete filling (Ch134670.7 - 134814.7) (Bay 4 - 15) | 24d | 2013-03-27 A | 2013-05-23 A | 821011335 SS+3d | 100% | 2013-03-27 | 2013-04-27 | mandatory finish 2013-05-07 | Concretor [768 h]; Concrete [18 m3]; Other Skill Labour (Civil) [432 h] | CCB | 821 | 2110 | TUNS | C090 | 2 |
| 821011355 |  | Central walkway (Ch134814.7 - 135060.7) (Bay 16 - 34) | 41d | 2013-05-22 A | 2013-06-19 A | 821011335 | 100% | 2013-03-13 | 2013-05-04 | mandatory finish 2013-04-13 | Concrete [1452 m3]; Other Skill Labour (Civil) [1312 h]; Steel Fixer [640 h]; Concretor [656 h]; Carpenter [656 h] | CCB | 821 | 2110 | TUNS | C090 | 1 |
| 821011375 |  | Central concrete filling (Ch134814.7 - 135060.7) (Bay 16 - 34) | 41d | 2013-05-24 A | 2013-06-20 A | 821011365 | 100% | 2013-05-24 | 2013-07-12 | mandatory finish 2013-06-14 | Other Skill Labour (Civil) [1312 h]; Concrete; Concretor [656 h] | CCB | 821 | 2110 | TUNS | C090 | 2 |
| 821011370 |  | Partition wall (Ch134670.7 - 134814.7) (Bay 4 - 15) | 24d | 2013-05-27 A | 2013-06-12 A | 821011365 SS+3d | 100% | 2013-05-27 | 2013-06-24 | mandatory finish 2013-06-07 | Concrete [510 m3]; Rebar; Concrete Pump Set [144 h]; Other Skill Labour (Civil) [768 h]; Steel Fixer [288 h]; Carpenter [384 h]; Concretor [432 h] | CCB | 821 | 2110 | TUNS | C090 |  |
| 821013380 |  | Partition wall (Ch134814.7 - 135060.7) (Bay 16 - 34) | 18d | 2013-06-05 A | 2013-06-24 A | 821011370 | 100% | 2013-06-25 | 2013-07-16 |  | Concretor [624 h]; Rebar; Concrete Pump Set [320 h]; Concrete [867 m3]; Other Skill Labour (Civil) [1312 h]; Steel Fixer [640 h]; Carpenter [656 h] | CCB | 821 | 2110 | TUNS | C090 |  |
| 821017880 |  | Central concrete filling (Ch135060.7 - 135330.7) (Bay 35 - 56) | 22d | 2013-06-21 A | 2013-07-16 A | 821011375 | 100% | 2013-06-21 | 2013-07-17 | mandatory finish 2013-07-16 | Concretor [720 h]; Other Skill Labour (Civil) [1440 h]; Concrete | CCB | 821 | 2110 | TUNS | C090 | 2 |
| 821017870 |  | Central walkway (Ch135060.7 - 135330.7) (Bay 35 - 56) | 22d | 2013-06-25 A | 2013-07-15 A | 821011355 | 100% | 2013-06-20 | 2013-07-16 | mandatory finish 2013-07-15 | Concrete [1593 m3]; Other Skill Labour (Civil) [1440 h]; Steel Fixer [720 h]; Concretor [720 h]; Carpenter [720 h] | CCB | 821 | 2110 | TUNS | C090 | 1 |
| 821017890 |  | Partition wall (Ch135060.7 - 135330.7) (Bay 35 - 56) | 22d | 2013-06-25 A | 2013-07-24 A | 821013380 | 100% | 2013-06-25 | 2013-07-20 | mandatory finish 2013-07-16 | Concrete [956 m3]; Other Skill Labour (Civil) [1440 h]; Steel Fixer [720 h]; Carpenter [720 h]; Concretor [720 h]; Rebar; Concrete Pump Set [360 h] | CCB | 821 | 2110 | TUNS | C090 |  |
| 821017220 |  | Central walkway (Ch135330.7 - 135712) (Bay 57 - 87) | 31d | 2013-07-16 A | 2013-09-10 A |  | 100% | 2013-07-16 | 2013-08-20 | mandatory finish 2013-09-02 | Concrete [2250 m3]; Other Skill Labour (Civil) [1024 h]; Steel Fixer [608 h]; Concretor [512 h]; Carpenter [512 h] | CCB | 821 | 2110 | TUNS | C090 | 1 |
| 821017230 |  | Central concrete filling (Ch135330.7 - 135712) (Bay 57 - 87) | 31d | 2013-07-17 A | 2013-10-10 A |  | 100% | 2013-07-17 | 2013-08-21 | mandatory finish 2013-09-04 | Concretor [512 h]; Concrete; Other Skill Labour (Civil) [912 h] | CCB | 821 | 2110 | TUNS | C090 | 2 |
| 821017240 |  | Partition wall (Ch135330.7 - 135712) (Bay 57 - 87) | 31d | 2013-07-25 A | 2013-10-12 A |  | 100% | 2013-07-25 | 2013-08-29 | mandatory finish 2013-09-11 | Concrete [1350 m3]; Other Skill Labour (Civil) [1024 h]; Steel Fixer [608 h]; Carpenter [512 h]; Concretor [512 h]; Rebar; Concrete Pump Set [304 h] | CCB | 821 | 2110 | TUNS | C090 |  |
| 821015920 |  | Dismantle formwork | 6d | 2013-10-15 A | 2013-10-20 A | 821012585 FF | 100% | 2013-10-15 | 2013-10-21 | mandatory start 2013-10-21 | Crane Lorry [48 h]; Other Skill Labour (Civil) [288 h]; Plant Operator [48 h] | CCB | 821 | 2110 | TUNS | C090 |  |
|  | 6 | **Walkway** |  | 2013-06-19 | 2014-05-24 |  |  |  |  |  |  |  |  |  |  |  |  |
| 821012110 |  | South Type 1 Precast sides walkway (Ch135497 - 134644.7) | 12d | 2013-06-19 A | 2013-11-23 A | 821017890 | 100% | 2013-06-19 | 2013-07-03 | mandatory start 2013-05-28 | Plant Operator [128 h]; Other Skill Labour (Civil) [576 h]; Forklift [128 h] | CCB | 821 | 2110 | TUNS | C090 |  |
| 821012210 |  | Concrete filling (South) | 12d | 2013-06-24 A | 2013-12-31 A | 821012110 SS+5d | 100% | 2013-06-24 | 2013-07-08 |  | Other Skill Labour (Civil) [352 h]; Concretor [528 h] | CCB | 821 | 2110 | TUNS | C090 |  |
| 821017900 |  | South Type 1 Precast sides walkway (Ch135712 - 135497) | 3d | 2013-10-21 A | 2013-12-31 A | 821012110, 821011280 | 100% | 2013-10-15 | 2013-10-17 | mandatory finish 2013-12-07 | Other Skill Labour (Civil) [144 h]; Forklift [24 h]; Plant Operator [24 h] | CCB | 821 | 2110 | TUNS | C090 |  |
| 821017910 |  | Concrete filling (South) | 3d | 2013-10-21 A | 2013-11-23 A | 821017900 SS+5d | 100% | 2013-10-21 | 2013-10-23 |  | Other Skill Labour (Civil) [144 h]; Concretor [96 h] | CCB | 821 | 2110 | TUNS | C090 |  |
| 821011320 |  | Ref 4E Closure of access opening at the centre wall at Ch135+600 | 23d | 2014-05-02 A | 2014-05-24 A | 8210PM016 | 100% | 2014-05-02 | 2014-05-29 |  | Concretor [240 h]; Concrete [20 m3]; Other Skill Labour (Civil) [160 h]; Steel Fixer [160 h]; Carpenter [160 h] | CCB | 821 | 2110 | TUNS | C090 |  |
|  | 7 | **Miscellaneous** |  | 2013-06-08 | 2013-09-14 |  |  |  |  |  |  |  |  |  |  |  |  |
| 821015900 |  | Degree 1 Works - South Tunnel | 50d | 2013-06-08 A | 2013-09-14 A | 821012110 SS+10d | 100% | 2013-06-08 | 2013-08-07 |  | Other Skill Labour (Civil) [2400 h] | CCB | 821 | 2110 | TUNS | C090 |  |

| ID | WBS | Activity | Duration | Start | Finish | Predecessors | Complete | Planned start | Planned finish | Constraint | Resources | Cost Centre | Sequence | Contracts | Location | Phase of Works |
| --- | --- | --- | --- | --- | --- | --- | --- | --- | --- | --- | --- | --- | --- | --- | --- | --- |
|  | 3 | **Twin Track Tunnel with T-junction** |  | 2011-11-14 | 2014-07-05 |  |  |  |  |  |  |  |  |  |  |  |
| 821011535 |  | Drill & blast exc with temp support (T-junction Phase A to E) | 51d | 2011-11-14 A | 2011-12-24 A | 821016074, 821011418 FS-2d | 100% | 2011-11-14 | 2012-01-14 |  | Cherry Picker [368 h]; Shotcrete Set [368 h]; Grouting Set [368 h]; Mechanic [816 h]; Electrician [816 h]; Shortfirer [1472 h]; Ganger [816 h]; Welder [816 h]; Other Skill Labour (Civil) [2208 h]; Miner [1472 h]; Excavation - Hard [5135 m3]; Plant Operator [5712 h]; Backhoe [368 h]; Backhoe with Breaker [368 h]; Truck Lorry [368 h]; Crane Lorry [368 h]; Loader [368 h]; Forklift [368 h] | CCB | 1 | 821 | 2110 | C090 |
| 821016800 |  | Drill & blast exc with temp support (T-junction Phase F to G) | 20d | 2011-12-28 A | 2012-01-07 A | 821011535 | 100% | 2011-12-28 | 2012-01-20 |  | Excavation - Hard [3031 m3]; Plant Operator [2240 h]; Backhoe [160 h]; Backhoe with Breaker [160 h]; Truck Lorry [160 h]; Crane Lorry [160 h]; Loader [160 h]; Forklift [160 h]; Cherry Picker [160 h]; Shotcrete Set [160 h]; Grouting Set [160 h]; Mechanic [320 h]; Electrician [320 h]; Shortfirer [640 h]; Ganger [320 h]; Welder [320 h]; Other Skill Labour (Civil) [960 h]; Miner [640 h] | CCB | 1 | 821 | 2110 | C090 |
| 821011545 |  | Drill & blast exc with temp support (T-junction Phase H to L) | 36d | 2012-01-09 A | 2012-03-22 A | 821016800 | 100% | 2012-01-09 | 2012-02-22 |  | Miner [512 h]; Excavation - Hard [7660 m3]; Plant Operator [4032 h]; Backhoe [288 h]; Backhoe with Breaker [288 h]; Truck Lorry [288 h]; Crane Lorry [288 h]; Loader [288 h]; Forklift [288 h]; Cherry Picker [288 h]; Shotcrete Set [288 h]; Grouting Set [288 h]; Mechanic [512 h]; Electrician [512 h]; Shortfirer [512 h]; Ganger [512 h]; Other Skill Labour (Civil) [768 h] | CCB | 1 | 821 | 2110 | C090 |
| 821011575 |  | Drill & blast exc with temp support (T-junction Phase M to T) | 26d | 2012-03-22 A | 2012-03-23 A | 821011545 | 100% | 2012-03-22 | 2012-04-25 |  | Excavation - Hard [773 m3]; Plant Operator [2912 h]; Truck Lorry [208 h]; Crane Lorry [208 h]; Loader [208 h]; Forklift [208 h]; Cherry Picker [208 h]; Concrete Pump Set [208 h]; Shotcrete Set [208 h]; Grouting Set [208 h]; Mechanic [416 h]; Electrician [416 h]; Shortfirer [832 h]; Ganger [208 h]; Miner [832 h]; Welder [208 h] | CCB | 1 | 821 | 2110 | C090 |
|  | 1 | **Sidewalls in T-junction** |  | 2013-01-28 | 2013-03-16 |  |  |  |  |  |  |  |  |  |  |  |
| 821012500 |  | Formwork erection | 16d | 2013-01-28 A | 2013-02-18 A | 821017210 FS+5d, 821011385, 821011339, 821013940, 821011575, 821015370, 821012020, 821017180, 821017320, 821017340, 821011266 FS+5d | 100% |  |  |  | Other Skill Labour (Civil) [384 h]; Plant Operator [96 h]; Crane Lorry [96 h]; Carpenter [192 h] | CCB | 1 | 821 | 2110 | C090 |
| 821011460 |  | Sidewalls concreting works | 13d | 2013-02-19 A | 2013-03-16 A | 821012500 | 100% | 2013-02-19 | 2013-03-05 | mandatory finish 2013-04-20 | Concrete [723.8 m3]; Other Skill Labour (Civil) [384 h]; Concretor [192 h]; Steel Fixer [192 h] | CCB | 2 | 821 | 2110 | C090 |
|  | 2 | **Vault in T-junction** |  | 2013-01-21 | 2013-03-16 |  |  |  |  |  |  |  |  |  |  |  |
| 821011540 |  | Vault concrete | 12d | 2013-01-21 A | 2013-03-16 A | 821011460 FS+3d | 100% | 2013-02-21 | 2013-03-06 |  | Other Skill Labour (Civil) [416 h]; Concretor [208 h]; Plant Operator [104 h] | CCB | 2 | 821 | 2110 | C090 |
|  | 3 | **Slab in T-junction** |  | 2013-01-21 | 2013-05-18 |  |  |  |  |  |  |  |  |  |  |  |
| 821011490 |  | Formwork erection | 17d | 2013-01-21 A | 2013-02-08 A | 821011540 | 100% |  |  |  | Other Skill Labour (Civil) [288 h]; Crane Lorry [144 h]; Plant Operator [144 h]; Carpenter [288 h] | CCB | 2 | 821 | 2110 | C090 |
| 821011465 |  | Slab concreting works | 11d | 2013-02-09 A | 2013-05-03 A | 821011490 | 100% | 2013-02-09 | 2013-02-25 |  | Rebar; Other Skill Labour (Civil) [320 h]; Concretor [160 h]; Steel Fixer [160 h]; Concrete [200 m3] | CCB | 2 | 821 | 2110 | C090 |
| 821012120 |  | Formwork dismantling | 12d | 2013-05-04 A | 2013-05-18 A | 821011465 | 100% |  |  | mandatory start 2013-05-04 | Other Skill Labour (Civil) [384 h] | CCB | 2 | 821 | 2110 | C090 |
|  | 4 | **Partition Walls in T-junction** |  | 2013-05-06 | 2013-08-01 |  |  |  |  |  |  |  |  |  |  |  |
| 821011475 |  | Lower Partition wall formwork erection | 17d | 2013-05-06 A | 2013-05-20 A | 821011470 | 100% | 2013-05-06 | 2013-05-25 |  | Other Skill Labour (Civil) [224 h]; Crane Lorry [144 h]; Carpenter [288 h]; Plant Operator [144 h] | CCB | 2 | 821 | 2110 | C090 |
| 821012185 |  | Upper Partition wall formwork erection | 17d | 2013-05-06 A | 2013-05-20 A | 821012120 | 100% | 2013-05-06 | 2013-05-25 | mandatory start 2013-03-09 | Plant Operator [144 h]; Crane Lorry [144 h]; Other Skill Labour (Civil) [288 h]; Carpenter [288 h] | CCB | 2 | 821 | 2110 | C090 |
| 821011470 |  | Upper Partition wall concreting works | 12d | 2013-05-21 A | 2013-08-01 A | 821012185 | 100% | 2013-05-21 | 2013-06-03 |  | Concrete [156.6 m3]; Rebar; Other Skill Labour (Civil) [384 h]; Concretor [192 h]; Steel Fixer [192 h] | CCB | 2 | 821 | 2110 | C090 |
| 821011485 |  | Lower Partition wall concreting works | 13d | 2013-05-21 A | 2013-07-25 A | 821011475 | 100% | 2013-05-21 | 2013-06-04 |  | Steel Fixer [208 h]; Concrete [300 m3]; Rebar; Other Skill Labour (Civil) [416 h]; Concretor [208 h] | CCB | 3 | 821 | 2110 | C090 |
|  | 5 | **Niche in T-junction** |  | 2013-03-08 | 2013-04-08 |  |  |  |  |  |  |  |  |  |  |  |
| 821012560 |  | Niche concreting works | 23d | 2013-03-08 A | 2013-04-08 A | 821012120 FS-1d | 100% |  |  |  | Concretor [368 h]; Concrete [80 m3]; Rebar; Other Skill Labour (Civil) [368 h]; Steel Fixer [368 h] | CCB | 1 | 821 | 2110 | C090 |
|  | 7 | **Undertrack** |  | 2013-01-21 | 2013-05-06 |  |  |  |  |  |  |  |  |  |  |  |
| 821017530 |  | Undertrack concreting works | 11d | 2013-01-21 A | 2013-04-03 A | 821012300 FS+317d | 100% | 2013-01-21 | 2013-02-01 |  | Concrete [100 m3]; Other Skill Labour (Civil) [176 h]; Steel Fixer [176 h]; Concretor [176 h] | CCC |  | 821 | 2120 | C090 |
| 821017540 |  | Undertrack backfilling | 3d | 2013-04-08 A | 2013-04-13 A | 821017530 | 100% | 2013-04-08 | 2013-04-10 |  | Other Skill Labour (Civil) [96 h]; Plant Operator [24 h]; Backhoe [24 h] | CCC |  | 821 | 2120 | C090 |
| 821017550 |  | Undertrack blinding concrete on top of backfill | 2d | 2013-04-15 A | 2013-05-06 A | 821017540 | 100% | 2013-04-15 | 2013-04-16 |  | Concrete [30 m3]; Other Skill Labour (Civil) [16 h]; Concretor [16 h] | CCC |  | 821 | 2120 | C090 |

| ID | WBS | Activity | Type | Duration | Start | Finish | Predecessors | Complete | Planned start | Planned finish | Constraint | Calendar | Resources | Cost Centre | Contracts | Location | Phase of Works | Sequence | Sub-location | Areas/Rooms |
| --- | --- | --- | --- | --- | --- | --- | --- | --- | --- | --- | --- | --- | --- | --- | --- | --- | --- | --- | --- | --- |
|  | 13 | **Staging Area - Enlargement (CH0+606 - 0+646)** |  |  | 2013-07-22 | 2013-12-21 |  |  |  |  |  |  |  |  |  |  |  |  |  |  |
| 821012720 |  | Vault shotcrete |  | 12d | 2013-07-22 A | 2013-07-31 A | 821012370 SS | 100% | 2013-08-05 | 2013-08-17 |  |  | Other Skill Labour (Civil) [192 h]; Shotcrete Set [96 h]; Concretor [192 h] | CCC | 821 | 2120 | C090 |  |  |  |
| 821013110 |  | Upper Partition wall & Slabs from 0+646 to 0+606 |  | 22d | 2013-08-01 A | 2013-12-21 A | 821012380 FS+13d, 821017550, 821012720 | 100% | 2013-08-01 | 2013-08-26 | mandatory finish 2013-11-16 |  | Steel Fixer [352 h]; Carpenter [352 h]; Concretor [352 h]; Concrete [300 m3]; Other Skill Labour (Civil) [352 h] | CCC | 821 | 2120 | C090 |  |  |  |
|  | 6 | **Access Opening construction** |  |  | 2014-05-05 | 2014-07-05 |  |  |  |  |  |  |  |  |  |  |  |  |  |  |
| 821011400 |  | Ref 4E Closure of access opening at ctr wall & tunnel wall at j/c interface at KCVA Adit |  | 45d | 2014-05-05 A | 2014-06-21 A | 8210PM006, 821011485 | 100% | 2014-05-05 | 2014-06-27 | start on 2014-04-01 |  | Concrete [20 m3]; Other Skill Labour (Civil) [720 h]; Steel Fixer [360 h]; Carpenter [720 h]; Concretor [360 h] | CCB | 821 | 2110 | C090 | 2 |  |  |
| 821011495 |  | Touch-up work for Closure of access opening |  | 10d | 2014-06-23 A | 2014-07-05 A | 821011400 FF | 100% | 2014-06-23 | 2014-07-04 |  |  | Other Skill Labour (Civil) [480 h] | CCB | 821 | 2110 | C090 |  |  |  |
|  | 4 | **TBM2 (S-631-1) Downtrack Tunnel (CH136+640 - 135+972, 668m and CH135+972 - 135+737, 235m)** |  |  | 2012-07-29 | 2013-07-31 |  |  |  |  |  |  |  |  |  |  |  |  |  |  |
| 821013370 |  | D/T Excavation from Ch136+640 to 136+583 |  | 6d | 2012-07-29 A | 2012-08-10 A | 821015420, 821011020, 8210IF500, 821011010, 821013630, 821011265 | 100% | 2012-07-29 | 2012-08-03 |  | 4 - 821 TBM 21Hrs all day | TBM Operational Crew [2304 h]; TBM Maintenance Crew [864 h]; Excavation - Hard [3889 m3]; TBM [48 h] | CCB | 821 | 2110 | C090 |  | TUNS | DT |
| 821016970 |  | Reach CP84(CH136+601) | milestone | 0d | 2012-08-06 A | 2012-08-06 A | 821013370 FS-2d | 100% |  |  |  | 820 - Cal 2 (DRM Ver.A Rev.1) |  | CCB | 821 | 2110 | C090 |  | TUNS | DT |
| 821016030 |  | D/T Excavation from Ch136+583 to 136+351 |  | 29d | 2012-08-10 A | 2012-09-11 A | 821016970, 821013370 | 100% | 2012-08-10 | 2012-09-07 |  | 4 - 821 TBM 21Hrs all day | TBM Operational Crew [11136 h]; TBM Maintenance Crew [4176 h]; Excavation - Hard [15827 m3]; TBM [232 h] | CCB | 821 | 2110 | C090 |  | TUNS | DT |
| 821016040 |  | D/T Excavation from Ch136+351 to 136+101 |  | 25d | 2012-09-11 A | 2012-10-07 A | 821016030, 821016980 | 100% | 2012-09-11 | 2012-10-05 |  | 4 - 821 TBM 21Hrs all day | TBM Operational Crew [9600 h]; TBM Maintenance Crew [3600 h]; Excavation - Hard [17055 m3]; TBM [200 h] | CCB | 821 | 2110 | C090 |  | TUNS | DT |
| 821016980 |  | Reach CP83(CH136+351) | milestone | 0d | 2012-09-11 A | 2012-09-11 A | 821016030 | 100% |  |  |  | 820 - Cal 2 (DRM Ver.A Rev.1) |  | CCB | 821 | 2110 | C090 |  | TUNS | DT |
| 821013510 |  | D/T Excavation from Ch136+101 to 135+972 |  | 11d | 2012-10-07 A | 2012-10-17 A | 821012320, 821016990, 821016040 | 100% |  |  |  | 4 - 821 TBM 21Hrs all day | TBM Maintenance Crew [1584 h]; Excavation - Hard [8800 m3]; TBM [88 h]; TBM Operational Crew [4224 h] | CCB | 821 | 2110 | C090 |  | TUNS | DT |
| 821016990 |  | Reach CP82(CH136+101) | milestone | 0d | 2012-10-07 A | 2012-10-07 A | 821016040 | 100% |  |  |  | 820 - Cal 2 (DRM Ver.A Rev.1) |  | CCB | 821 | 2110 | C090 |  | TUNS | DT |
| 821016630 |  | D/T Excavation from Ch135+972 to 135+772 |  | 18d | 2012-10-17 A | 2012-12-08 A | 821013510 | 100% | 2012-10-17 | 2012-11-03 |  | 4 - 821 TBM 21Hrs all day | TBM Operational Crew [6912 h]; TBM Maintenance Crew [2592 h]; Excavation - Hard [13644 m3]; TBM [144 h] | CCB | 821 | 2110 | C090 |  | TUNS | DT |
| 821017000 |  | Reach CP81(CH135+851) | milestone | 0d | 2012-11-26 A | 2012-11-26 A | 821016630 FS-7d | 100% |  |  |  | 820 - Cal 2 (DRM Ver.A Rev.1) |  | CCB | 821 | 2110 | C090 |  | TUNS | DT |
| 821017820 |  | D/T Excavation from Ch135+772 to 135+737 (235m) (Break-in) |  | 3d | 2012-12-08 A | 2012-12-14 A | 821016630, 821016620 FF | 100% | 2012-12-08 | 2012-12-10 |  | 4 - 821 TBM 21Hrs all day | TBM Operational Crew [1536 h]; TBM Maintenance Crew [576 h]; Excavation - Hard [2388 m3]; TBM [32 h] | CCB | 821 | 2110 | C090 |  | TUNS | DT |
| 821013515 |  | D/T TBM exit inside Cavern |  | 5d | 2012-12-15 A | 2012-12-19 A | 821017000, 821017820 | 100% |  |  |  | 4 - 821 TBM 21Hrs all day | TBM Operational Crew [1920 h]; TBM Maintenance Crew [720 h]; TBM [40 h] | CCB | 821 | 2110 | C090 |  | TUNS | DT |
| 821013530 |  | TBM (S631-1) Shield Dismantle & Removal |  | 45d | 2012-12-17 A | 2013-01-30 A | 821015880, 821013515 | 100% |  |  | mandatory finish 2013-01-30 | 820 - Cal 2 (DRM Ver.A Rev.1) | TBM Operational Crew [6480 h] | CCB | 821 | 2110 | C090 |  | TUNS | DT |
| 821016560 |  | TBM (S631-1) Backup pull back |  | 10d | 2013-01-07 A | 2013-01-23 A | 821013515 FS+28d, 821013530 SS+10d | 100% | 2013-01-07 | 2013-01-16 |  | 820 - Cal 2 (DRM Ver.A Rev.1) | TBM Operational Crew [1440 h] | CCB | 821 | 2110 | C090 |  | TUNS | DT |
| 821016570 |  | Set up Equipment for Invert Construction (Ch135+772 to Ch137+784) |  | 12d | 2013-01-31 A | 2013-02-08 A | 821013530 | 100% | 2013-01-31 | 2013-02-16 | mandatory start 2013-01-31 | 820 - Cal 3 (DRM Ver.A Rev.1) | Other Skill Labour (Civil) [576 h] | CCB | 821 | 2110 | C090 |  | TUNS | DT |
| 821013730 |  | Tunnel Invert (North DT- Ch136+818 to Ch137+784) (B02 - A08) |  | 65d | 2013-02-14 A | 2013-05-31 A | 821013760 | 100% | 2013-05-06 | 2013-07-23 |  | 820 - Cal 3 (DRM Ver.A Rev.1) | Carpenter [1560 h]; Concretor [1560 h]; Other Skill Labour (Civil) [1560 h]; Steel Fixer [1560 h] | CCB | 821 | 2110 | C090 |  | TUNS | DT |
| 821016580 |  | Walkway (North DT- Ch136+818 to Ch137+784) (B02 - A08) |  | 65d | 2013-02-14 A | 2013-05-31 A | 821013730 SS, 821013540 | 100% | 2013-02-18 | 2013-05-09 |  | 820 - Cal 3 (DRM Ver.A Rev.1) | Steel Fixer [1560 h]; Carpenter [1560 h]; Concretor [1560 h]; Other Skill Labour (Civil) [1560 h] | CCB | 821 | 2110 | C090 |  | TUNS | DT |
| 821013840 |  | Completion of Degree 1 work of D/T |  | 68d | 2013-04-29 A | 2013-07-31 A | 821013730 SS, 821016580 SS+16d | 100% | 2013-04-29 | 2013-07-20 | mandatory finish 2013-07-19 | 820 - Cal 3 (DRM Ver.A Rev.1) | Other Skill Labour (BS / E&M) [12480 h] | CCB | 821 | 2110 | C090 |  | TUNS | DT |
| 821013760 |  | Tunnel Invert (North DT- Ch135+737-XRL821 to Ch136+818) (B03 - B16) |  | 56d | 2013-05-16 A | 2013-06-15 A | 821016570 | 100% | 2013-05-16 | 2013-07-23 | mandatory finish 2013-07-17 | 820 - Cal 3 (DRM Ver.A Rev.1) | Other Skill Labour (Civil) [1728 h]; Carpenter [1728 h]; Concretor [1728 h]; Steel Fixer [1728 h] | CCB | 821 | 2110 | C090 |  | TUNS | DT |
| 821013540 |  | Walkway (North DT- Ch135+737-XRL821 to Ch136+818) (B03 - B16) |  | 73d | 2013-05-27 A | 2013-07-31 A | 821013760 SS | 100% | 2013-05-27 | 2013-08-21 | mandatory finish 2013-07-31 | 820 - Cal 3 (DRM Ver.A Rev.1) | Other Skill Labour (Civil) [1728 h]; Carpenter [1536 h]; Concretor [1728 h]; Steel Fixer [1728 h] | CCB | 821 | 2110 | C090 |  | TUNS | DT |

| ID | WBS | Activity | Type | Duration | Start | Finish | Predecessors | Complete | Planned start | Planned finish | Constraint | Calendar | Resources | Cost Centre | Contracts | Location | Sub-location | Areas/Rooms | Phase of Works |
| --- | --- | --- | --- | --- | --- | --- | --- | --- | --- | --- | --- | --- | --- | --- | --- | --- | --- | --- | --- |
|  | 5 | **TBM2 (S-631-1) Uptrack Tunnel (CH136+656 - 135+985, 671m and CH135+985 - 135+750, 235m)** |  |  | 2013-07-24 | 2014-04-18 |  |  |  |  |  |  |  |  |  |  |  |  |  |
| 821013700 |  | U/T Excavation from Ch136+656 to 136+601 |  | 6d | 2013-07-24 A | 2013-07-30 A | 821013650, 8210IF520 | 100% | 2013-07-24 | 2013-07-29 | mandatory start 2013-07-25 | 4 - 821 TBM 21Hrs all day | TBM Operational Crew [2304 h]; TBM Maintenance Crew [864 h]; Excavation - Hard [3752 m3]; TBM [40 h] | CCB | 821 | 2110 | TUNS | UT | C090 |
| 821017010 |  | Reach CP84(CH136+616) | milestone | 0d | 2013-07-29 A | 2013-07-29 A | 821013700 FS-2d | 100% |  |  |  | 820 - Cal 2 (DRM Ver.A Rev.1) |  | CCB | 821 | 2110 | TUNS | UT | C090 |
| 821013705 |  | U/T Excavation from Ch136+601 to 136+365 |  | 17d | 2013-07-30 A | 2013-08-23 A | 821013700, 821017010 | 100% | 2013-07-30 | 2013-08-15 | mandatory start 2013-08-01 | 4 - 821 TBM 21Hrs all day | TBM Maintenance Crew [2448 h]; Excavation - Hard [16100 m3]; TBM [136 h]; TBM Operational Crew [6528 h] | CCB | 821 | 2110 | TUNS | UT | C090 |
| 821013706 |  | U/T Excavation from Ch136+365 to 136+114 |  | 27d | 2013-08-23 A | 2013-09-17 A | 821013705, 821017020 | 100% | 2013-08-23 | 2013-09-18 | mandatory finish 2013-09-18 | 4 - 821 TBM 21Hrs all day | TBM Operational Crew [10368 h]; TBM Maintenance Crew [3888 h]; Excavation - Hard [17123 m3]; TBM [216 h] | CCB | 821 | 2110 | TUNS | UT | C090 |
| 821017020 |  | Reach CP83(CH136+365) | milestone | 0d | 2013-08-23 A | 2013-08-23 A | 821013705 | 100% |  |  |  | 820 - Cal 2 (DRM Ver.A Rev.1) |  | CCB | 821 | 2110 | TUNS | UT | C090 |
| 821013720 |  | U/T Excavation from Ch136+114 to 135+985 |  | 12d | 2013-09-17 A | 2013-10-06 A | 821013706, 821017030 | 100% | 2013-09-17 | 2013-09-28 |  | 4 - 821 TBM 21Hrs all day | TBM Operational Crew [4608 h]; TBM Maintenance Crew [1728 h]; Excavation - Hard [8800 m3]; TBM [96 h] | CCB | 821 | 2110 | TUNS | UT | C090 |
| 821017030 |  | Reach CP82(CH136+114) | milestone | 0d | 2013-09-17 A | 2013-09-17 A | 821013706 | 100% |  |  | mandatory finish 2013-09-18 | 820 - Cal 2 (DRM Ver.A Rev.1) |  | CCB | 821 | 2110 | TUNS | UT | C090 |
| 821016640 |  | U/T Excavation from Ch135+985 to 135+785 |  | 18d | 2013-10-06 A | 2013-10-31 A | 821013720 | 100% | 2013-10-22 | 2013-11-08 |  | 4 - 821 TBM 21Hrs all day | TBM Operational Crew [6912 h]; TBM Maintenance Crew [2592 h]; Excavation - Hard [13644 m3]; TBM [144 h] | CCB | 821 | 2110 | TUNS | UT | C090 |
| 821017040 |  | Reach CP81(CH135+863) | milestone | 0d | 2013-10-22 A | 2013-10-22 A | 821016640 FS-4d | 100% |  |  |  | 820 - Cal 2 (DRM Ver.A Rev.1) |  | CCB | 821 | 2110 | TUNS | UT | C090 |
| 821017830 |  | U/T Excavation from Ch135+785 to 135+750 (235m) (Break-in) |  | 4d | 2013-10-31 A | 2013-11-09 A | 821016640 | 100% | 2013-10-31 | 2013-11-03 |  | 4 - 821 TBM 21Hrs all day | TBM Operational Crew [1536 h]; TBM Maintenance Crew [576 h]; Excavation - Hard [2388 m3]; TBM [32 h] | CCB | 821 | 2110 | TUNS | UT | C090 |
| 821013725 |  | U/T TBM exit inside Cavern |  | 5d | 2013-11-10 A | 2013-11-14 A | 821017040, 821017830 | 100% |  |  |  | 4 - 821 TBM 21Hrs all day | TBM Operational Crew [1920 h]; TBM Maintenance Crew [720 h]; TBM [40 h] | CCB | 821 | 2110 | TUNS | UT | C090 |
| 821013740 |  | TBM (S631-1) Removal & Backup pull back |  | 45d | 2013-11-15 A | 2013-12-29 A | 821013720, 821013725 | 100% |  |  |  | 820 - Cal 2 (DRM Ver.A Rev.1) | TBM Maintenance Crew [6480 h] | CCB | 821 | 2110 | TUNS | UT | C090 |
| 821016590 |  | Set up Equipment for Invert Construction (Ch135+785~Ch136+656 ) |  | 12d | 2014-02-13 A | 2014-02-15 A | 821013740 | 100% | 2014-02-13 | 2014-02-26 | start on 2014-03-03 | 820 - Cal 3 (DRM Ver.A Rev.1) | Other Skill Labour (Civil) [576 h] | CCB | 821 | 2110 | TUNS | UT | C090 |
| 821016610 |  | Tunnel invert & Walkway(UT-Northbound) (Ch136+475~Ch136+656) (Bay F02 - F01) |  | 9d | 2014-02-17 A | 2014-03-21 A | 821013770 | 100% | 2014-02-17 | 2014-02-26 |  | 820 - Cal 3 (DRM Ver.A Rev.1) | Other Skill Labour (Civil) [936 h]; Carpenter [936 h]; Concretor [936 h]; Steel Fixer [936 h] | CCB | 821 | 2110 | TUNS | UT | C090 |
| 821013770 |  | Tunnel invert & Walkway (UT-Northbound) (Ch135+749-XRL821~Ch136+475) (Bay F11 - F03) |  | 48d | 2014-02-19 A | 2014-04-07 A | 821016590 | 100% | 2014-02-19 | 2014-04-17 |  | 820 - Cal 3 (DRM Ver.A Rev.1) | Other Skill Labour (Civil) [1152 h]; Carpenter [1152 h]; Concretor [1152 h]; Steel Fixer [1152 h] | CCB | 821 | 2110 | TUNS | UT | C090 |
| 821013850 |  | Completion of Degree 1 work of U/T (Ch135+785~Ch136+656 ) |  | 65d | 2014-03-03 A | 2014-04-18 A | 821016610 FF, 821013770 SS+15d, 821014400 FF | 100% | 2014-03-03 | 2014-05-24 |  | 820 - Cal 3 (DRM Ver.A Rev.1) | Other Skill Labour (BS / E&M) [12480 h] | CCB | 821 | 2110 | TUNS | UT | C090 |
|  | 9 | **Cross Passage No. CP81** |  |  | 2013-02-23 | 2013-11-30 |  |  |  |  |  |  |  |  |  |  |  |  |  |
| 821016710 |  | Cross Passage Excavation & Temp. Support (from UT) |  | 6d | 2013-02-23 A | 2013-04-07 A | 821016760 | 100% | 2013-02-23 | 2013-03-01 |  | 820 - Cal9(N)CP81(+235m) (for 821 VB, R2_TBM235_15Jun12) | Other Skill Labour (Civil) [288 h]; Plant Operator [48 h] | CCB | 821 | 2110 | CP |  | C090 |
| 821016750 |  | CP81 Fissure Grouting from Tunnel |  | 3d | 2013-03-04 A | 2013-03-06 A | 821013760 SS+16d, 821017000 FS+27d, 821017050 | 100% |  |  | mandatory start 2013-03-04 | 820 - Cal9(N)CP81(+235m) (for 821 VB, R2_TBM235_15Jun12) | Grouting Set [480 h]; Other Skill Labour (Civil) [2880 h] | CCB | 821 | 2110 | CP |  | C090 |
| 821017050 |  | CP81 Preparation works for Grouting |  | 3d | 2013-03-04 A | 2013-03-06 A | 821017000 FS+94d, 821013760 SS+17d | 100% |  |  | mandatory start 2013-03-04 | 820 - Cal9(N)CP81(+235m) (for 821 VB, R2_TBM235_15Jun12) | Plant Operator [192 h]; Other Skill Labour (Civil) [1152 h]; Drilling rig [192 h] | CCB | 821 | 2110 | CP |  | C090 |
| 821016650 |  | Probing/Drainage (from D/T) |  | 3d | 2013-03-11 A | 2013-03-16 A | 821014180, 821016750 | 100% | 2013-03-11 | 2013-03-13 | mandatory start 2013-03-07 | 820 - Cal9(N)CP81(+235m) (for 821 VB, R2_TBM235_15Jun12) | Other Skill Labour (Civil) [144 h] | CCB | 821 | 2110 | CP |  | C090 |
| 821016660 |  | Segment Dismantle (DT) |  | 3d | 2013-03-11 A | 2013-03-16 A | 821016750, 821016650 | 100% | 2013-03-11 | 2013-03-13 | mandatory start 2013-03-07 | 820 - Cal9(N)CP81(+235m) (for 821 VB, R2_TBM235_15Jun12) | Other Skill Labour (Civil) [288 h] | CCB | 821 | 2110 | CP |  | C090 |
| 821016670 |  | Tunnel Frame Support (DT) |  | 6d | 2013-03-11 A | 2013-03-16 A | 821016660 | 100% |  |  |  | 820 - Cal9(N)CP81(+235m) (for 821 VB, R2_TBM235_15Jun12) | Other Skill Labour (Civil) [288 h] | CCB | 821 | 2110 | CP |  | C090 |
| 821016680 |  | Mobilization (UT) |  | 3d | 2013-11-11 A | 2013-11-12 A | 821016670, 821017040 FS+24d | 100% | 2013-11-11 | 2013-11-13 |  | 820 - Cal9(N)CP81(+235m) (for 821 VB, R2_TBM235_15Jun12) | Other Skill Labour (Civil) [144 h] | CCB | 821 | 2110 | CP |  | C090 |
| 821016700 |  | Probing/Drainage (from UT) |  | 6d | 2013-11-13 A | 2013-11-14 A | 821017040 FS+27d, 821016680 | 100% | 2014-11-13 | 2014-11-19 |  | 820 - Cal9(N)CP81(+235m) (for 821 VB, R2_TBM235_15Jun12) | Other Skill Labour (Civil) [288 h] | CCB | 821 | 2110 | CP |  | C090 |
| 821016760 |  | Segment Dismantle (UT) |  | 6d | 2013-11-15 A | 2013-11-18 A | 821016700 | 100% | 2013-11-15 | 2013-11-21 |  | 820 - Cal9(N)CP81(+235m) (for 821 VB, R2_TBM235_15Jun12) | Other Skill Labour (Civil) [288 h] | CCB | 821 | 2110 | CP |  | C090 |
| 821016720 |  | Waterproofing |  | 9d | 2013-11-19 A | 2013-11-23 A | 821016710 | 100% | 2013-11-18 | 2013-11-27 |  | 820 - Cal9(N)CP81(+235m) (for 821 VB, R2_TBM235_15Jun12) | Other Skill Labour (Civil) [432 h] | CCB | 821 | 2110 | CP |  | C090 |
| 821016690 |  | Permanent Slab |  | 6d | 2013-11-25 A | 2013-11-30 A | 821016730, 821016740 | 100% |  |  |  | 820 - Cal9(N)CP81(+235m) (for 821 VB, R2_TBM235_15Jun12) | Other Skill Labour (Civil) [288 h] | CCB | 821 | 2110 | CP |  | C090 |
| 821016730 |  | Permanent Beam |  | 9d | 2013-11-25 A | 2013-11-30 A | 821016720, 821015430, 821013770 SS+17d | 100% | 2013-11-25 | 2013-12-04 |  | 820 - Cal9(N)CP81(+235m) (for 821 VB, R2_TBM235_15Jun12) | Other Skill Labour (Civil) [432 h]; Concretor [432 h]; Steel Fixer [432 h]; Carpenter [432 h] | CCB | 821 | 2110 | CP |  | C090 |
| 821016740 |  | Permanent Lining |  | 6d | 2013-11-25 A | 2013-11-30 A | 821016730 | 100% |  |  |  | 820 - Cal9(N)CP81(+235m) (for 821 VB, R2_TBM235_15Jun12) | Other Skill Labour (Civil) [288 h] | CCB | 821 | 2110 | CP |  | C090 |

| ID | WBS | Activity | Duration | Start | Finish | Predecessors | Complete | Planned start | Planned finish | Constraint | Calendar | Resources | Cost Centre | Contracts | Location | Sub-location | Phase of Works |
| --- | --- | --- | --- | --- | --- | --- | --- | --- | --- | --- | --- | --- | --- | --- | --- | --- | --- |
|  | 6 | **Cross Passage No. CP82** |  | 2012-11-06 | 2013-11-09 |  |  |  |  |  |  |  |  |  |  |  |  |
| 821017060 |  | CP82 Preparation works for Grouting | 24d | 2012-11-06 A | 2012-11-09 A | 821016990 FS+27d, 821013760 SS+34d | 100% | 2012-12-15 | 2013-01-16 | mandatory start 2013-02-16 | 820 - Cal9(N) (+235m) (for 821 VB, R2_TBM235_15Jun12) | Other Skill Labour (Civil) [1152 h]; Plant Operator [192 h]; Drilling rig [192 h] | CCB | 821 | 2110 | CP | C090 |
| 821014010 |  | Segment Dismantle (DT) | 6d | 2012-11-10 A | 2012-11-21 A | 821014000 | 100% | 2012-12-15 | 2012-12-22 |  | 820 - Cal9(N) (+235m) (for 821 VB, R2_TBM235_15Jun12) | Other Skill Labour (Civil) [288 h] | CCB | 821 | 2110 | CP | C090 |
| 821014000 |  | Probing/Drainage (D/T) | 6d | 2012-11-12 A | 2012-11-17 A | 821017060, 821015000 | 100% | 2012-12-15 | 2012-12-22 |  | 820 - Cal9(N) (+235m) (for 821 VB, R2_TBM235_15Jun12) | Other Skill Labour (Civil) [288 h] | CCB | 821 | 2110 | CP | C090 |
| 821015000 |  | CP82 Fissure Grouting from Tunnel | 60d | 2012-11-12 A | 2012-12-08 A | 821016990 FS+27d, 821017060, 821013760 SS+25d | 100% | 2012-12-15 | 2013-03-05 | mandatory finish 2012-12-31 | 820 - Cal9(N) (+235m) (for 821 VB, R2_TBM235_15Jun12) | Other Skill Labour (Civil) [2880 h]; Grouting Set [480 h] | CCB | 821 | 2110 | CP | C090 |
| 821014340 |  | Cross Passage Excavation & Temp. Support (from UT) | 8d | 2013-03-12 A | 2013-03-23 A | 821014270, 821014330, 821014020 | 100% | 2013-11-21 | 2013-11-29 |  | 820 - Cal9(N) (+235m) (for 821 VB, R2_TBM235_15Jun12) | Other Skill Labour (Civil) [384 h]; Plant Operator [384 h] | CCB | 821 | 2110 | CP | C090 |
| 821014020 |  | Cross Passage Excavation & Temp. Support (from DT) | 12d | 2013-03-12 A | 2013-03-23 A | 821014010 | 100% | 2013-03-12 | 2013-03-25 | mandatory start 2013-03-04 | 820 - Cal9(N) (+235m) (for 821 VB, R2_TBM235_15Jun12) | Other Skill Labour (Civil) [576 h]; Plant Operator [96 h] | CCB | 821 | 2110 | CP | C090 |
| 821014080 |  | Waterproofing (DT) | 9d | 2013-03-25 A | 2013-04-06 A | 821014020 | 100% |  |  | mandatory start 2013-04-02 | 820 - Cal9(N) (+235m) (for 821 VB, R2_TBM235_15Jun12) | Other Skill Labour (Civil) [432 h] | CCB | 821 | 2110 | CP | C090 |
| 821014270 |  | Permanent Beam (DT) | 9d | 2013-04-08 A | 2013-04-18 A | 821014080 | 100% |  |  |  | 820 - Cal9(N) (+235m) (for 821 VB, R2_TBM235_15Jun12) | Other Skill Labour (Civil) [432 h]; Carpenter [432 h]; Concretor [432 h]; Steel Fixer [432 h] | CCB | 821 | 2110 | CP | C090 |
| 821014330 |  | Segment Dismantle (UT) | 6d | 2013-10-14 A | 2013-10-19 A | 821014320, 821013740 | 100% | 2013-11-21 | 2013-11-27 |  | 820 - Cal9(N) (+235m) (for 821 VB, R2_TBM235_15Jun12) | Other Skill Labour (Civil) [288 h] | CCB | 821 | 2110 | CP | C090 |
| 821014320 |  | Probing/Drainage (UT) | 6d | 2013-10-15 A | 2013-10-18 A | 821014270, 821017030 FS+23d | 100% | 2013-11-21 | 2013-11-27 |  | 820 - Cal9(N) (+235m) (for 821 VB, R2_TBM235_15Jun12) | Other Skill Labour (Civil) [288 h] | CCB | 821 | 2110 | CP | C090 |
| 821014350 |  | Waterproofing (UT) | 9d | 2013-10-21 A | 2013-10-26 A | 821014340 | 100% | 2013-11-21 | 2013-11-30 |  | 820 - Cal9(N) (+235m) (for 821 VB, R2_TBM235_15Jun12) | Other Skill Labour (Civil) [432 h] | CCB | 821 | 2110 | CP | C090 |
| 821014360 |  | Permanent Beam (UT) | 9d | 2013-10-28 A | 2013-11-02 A | 821014350 | 100% | 2013-11-21 | 2013-11-30 |  | 820 - Cal9(N) (+235m) (for 821 VB, R2_TBM235_15Jun12) | Other Skill Labour (Civil) [432 h]; Carpenter [432 h]; Concretor [432 h]; Steel Fixer [432 h] | CCB | 821 | 2110 | CP | C090 |
| 821014400 |  | Permanent Slab | 6d | 2013-10-28 A | 2013-11-02 A | 821014360, 821017070 | 100% | 2013-11-21 | 2013-11-27 | mandatory start 2013-11-04 | 820 - Cal9(N) (+235m) (for 821 VB, R2_TBM235_15Jun12) | Other Skill Labour (Civil) [288 h] | CCB | 821 | 2110 | CP | C090 |
| 821017070 |  | Permanent Lining | 6d | 2013-11-04 A | 2013-11-09 A | 821014360, 821013770 SS+34d, 821014350 | 100% | 2013-11-21 | 2013-11-27 | mandatory start 2013-11-01 | 820 - Cal9(N) (+235m) (for 821 VB, R2_TBM235_15Jun12) | Other Skill Labour (Civil) [288 h] | CCB | 821 | 2110 | CP | C090 |
|  | 7 | **Cross Passage No. CP83** |  | 2012-10-03 | 2013-10-25 |  |  |  |  |  |  |  |  |  |  |  |  |
| 821017080 |  | CP83 Preparation works for Grouting | 24d | 2012-10-03 A | 2012-10-10 A | 821016980 FS+27d | 100% | 2012-09-25 | 2012-10-25 |  | 820 - Cal9(N) (+235m) (for 821 VB, R2_TBM235_15Jun12) | Other Skill Labour (Civil) [1152 h]; Drilling rig [192 h]; Plant Operator [192 h] | CCB | 821 | 2110 | CP | C090 |
| 821017090 |  | CP83 Re-setup for Grouting | 3d | 2012-10-08 A | 2012-10-10 A | 821017080, 821016980 FS+27d | 100% |  |  |  | 820 - Cal9(N) (+235m) (for 821 VB, R2_TBM235_15Jun12) | Other Skill Labour (Civil) [144 h]; Grouting Set [24 h] | CCB | 821 | 2110 | CP | C090 |
| 821015010 |  | CP83 Fissure Grouting from Tunnel Part I | 46d | 2012-10-11 A | 2012-10-17 A | 821016980, 821017080, 821017090 | 100% | 2012-10-11 | 2013-01-23 |  | 820 - Cal9(N) (+235m) (for 821 VB, R2_TBM235_15Jun12) | Grouting Set [480 h]; Other Skill Labour (Civil) [2208 h] | CCB | 821 | 2110 | CP | C090 |
| 821017100 |  | CP83 Fissure Grouting from Tunnel Part II | 14d | 2012-10-11 A | 2012-10-17 A | 821013760 SS+51d, 821015010, 821016980 FS+27d, 821017080, 821017090 | 100% | 2012-10-11 | 2012-10-27 |  | 820 - Cal9(N) (+235m) (for 821 VB, R2_TBM235_15Jun12) | Grouting Set [112 h]; Other Skill Labour (Civil) [672 h] | CCB | 821 | 2110 | CP | C090 |
| 821014280 |  | Probing/Drainage (DT) | 6d | 2012-10-18 A | 2012-10-25 A | 821017100, 821017090, 821017080, 821015010 | 100% |  |  |  | 820 - Cal9(N) (+235m) (for 821 VB, R2_TBM235_15Jun12) | Other Skill Labour (Civil) [288 h] | CCB | 821 | 2110 | CP | C090 |
| 821014290 |  | Segment Dismantle (DT) | 6d | 2012-10-18 A | 2012-10-25 A | 821014280 | 100% |  |  |  | 820 - Cal9(N) (+235m) (for 821 VB, R2_TBM235_15Jun12) | Other Skill Labour (Civil) [288 h] | CCB | 821 | 2110 | CP | C090 |
| 821014300 |  | Cross Passage Excavation & Temp. Support (from DT) | 46d | 2012-10-19 A | 2013-03-17 A | 821014290 | 100% | 2012-10-19 | 2013-01-31 | mandatory finish 2013-03-16 | 820 - Cal9(N) (+235m) (for 821 VB, R2_TBM235_15Jun12) | Other Skill Labour (Civil) [2208 h]; Plant Operator [368 h] | CCB | 821 | 2110 | CP | C090 |
| 821014410 |  | Cross Passage Excavation & Temp. Support (from UT) | 4d | 2013-02-23 A | 2013-03-17 A | 821014300, 821014490, 821014390 | 100% | 2013-02-23 | 2013-02-27 | mandatory finish 2013-10-07 | 820 - Cal9(N) (+235m) (for 821 VB, R2_TBM235_15Jun12) | Other Skill Labour (Civil) [384 h]; Plant Operator [32 h] | CCB | 821 | 2110 | CP | C090 |
| 821014310 |  | Waterproofing (DT) | 9d | 2013-03-18 A | 2013-03-23 A | 821014300 | 100% | 2013-03-18 | 2013-03-27 |  | 820 - Cal9(N) (+235m) (for 821 VB, R2_TBM235_15Jun12) | Other Skill Labour (Civil) [432 h] | CCB | 821 | 2110 | CP | C090 |
| 821014490 |  | Permanent Beam (DT) | 9d | 2013-03-25 A | 2013-04-06 A | 821014310 | 100% |  |  | mandatory start 2013-03-25 | 820 - Cal9(N) (+235m) (for 821 VB, R2_TBM235_15Jun12) | Other Skill Labour (Civil) [432 h]; Carpenter [432 h]; Concretor [432 h]; Steel Fixer [432 h] | CCB | 821 | 2110 | CP | C090 |
| 821014380 |  | Probing/Drainage (UT) | 6d | 2013-10-02 A | 2013-10-05 A | 821017020 FS+23d, 821014490 | 100% | 2013-09-16 | 2013-09-24 |  | 820 - Cal9(N) (+235m) (for 821 VB, R2_TBM235_15Jun12) | Other Skill Labour (Civil) [288 h] | CCB | 821 | 2110 | CP | C090 |
| 821014390 |  | Segment Dismantle (UT) | 6d | 2013-10-07 A | 2013-10-08 A | 821014380 | 100% | 2013-09-21 | 2013-09-27 |  | 820 - Cal9(N) (+235m) (for 821 VB, R2_TBM235_15Jun12) | Other Skill Labour (Civil) [288 h] | CCB | 821 | 2110 | CP | C090 |
| 821014420 |  | Waterproofing (UT) | 9d | 2013-10-09 A | 2013-10-12 A | 821014410 | 100% | 2013-11-21 | 2013-11-30 | mandatory start 2013-10-07 | 820 - Cal9(N) (+235m) (for 821 VB, R2_TBM235_15Jun12) | Other Skill Labour (Civil) [432 h] | CCB | 821 | 2110 | CP | C090 |
| 821014430 |  | Permanent Beam (UT) | 9d | 2013-10-15 A | 2013-10-25 A | 821014420 FS+1d | 100% | 2013-11-21 | 2013-11-30 |  | 820 - Cal9(N) (+235m) (for 821 VB, R2_TBM235_15Jun12) | Steel Fixer [432 h]; Other Skill Labour (Civil) [432 h]; Carpenter [432 h]; Concretor [432 h] | CCB | 821 | 2110 | CP | C090 |
| 821014440 |  | Permanent Slab | 6d | 2013-10-15 A | 2013-10-25 A | 821017110, 821014430 | 100% | 2013-11-21 | 2013-11-27 |  | 820 - Cal9(N) (+235m) (for 821 VB, R2_TBM235_15Jun12) | Other Skill Labour (Civil) [288 h] | CCB | 821 | 2110 | CP | C090 |
| 821017110 |  | Permanent Lining | 6d | 2013-10-15 A | 2013-10-25 A | 821014430, 821014420 | 100% | 2013-11-21 | 2013-11-27 |  | 820 - Cal9(N) (+235m) (for 821 VB, R2_TBM235_15Jun12) | Other Skill Labour (Civil) [288 h] | CCB | 821 | 2110 | CP | C090 |

| ID | WBS | Activity | Duration | Start | Finish | Predecessors | Complete | Planned start | Planned finish | Constraint | Calendar | Resources | Cost Centre | Contracts | Location | Sub-location | Phase of Works |
| --- | --- | --- | --- | --- | --- | --- | --- | --- | --- | --- | --- | --- | --- | --- | --- | --- | --- |
|  | 8 | **Cross Passage No. CP84** |  | 2012-09-03 | 2013-09-26 |  |  |  |  |  |  |  |  |  |  |  |  |
| 821017120 |  | CP84 Preparation works for Grouting | 24d | 2012-09-03 A | 2012-09-10 A | 821016970 FS+27d | 100% | 2012-08-25 | 2012-09-24 |  | 820 - Cal9(N) (+235m) (for 821 VB, R2_TBM235_15Jun12) | Other Skill Labour (Civil) [1152 h]; Drilling rig [192 h]; Plant Operator [192 h] | CCB | 821 | 2110 | CP | C090 |
| 821014450 |  | Probing/Drainage (DT) | 6d | 2012-09-11 A | 2012-09-18 A | 821013760 SS+36d, 821015240, 821017120 | 100% | 2012-09-11 | 2012-09-17 |  | 820 - Cal9(N) (+235m) (for 821 VB, R2_TBM235_15Jun12) | Other Skill Labour (Civil) [288 h] | CCB | 821 | 2110 | CP | C090 |
| 821015240 |  | CP84 Fissure Grouting from Tunnel | 60d | 2012-09-11 A | 2012-09-18 A | 821016970 FS+27d, 821017120 | 100% | 2012-09-11 | 2013-01-12 |  | 820 - Cal9(N) (+235m) (for 821 VB, R2_TBM235_15Jun12) | Grouting Set [480 h]; Other Skill Labour (Civil) [2880 h] | CCB | 821 | 2110 | CP | C090 |
| 821014460 |  | Segment Dismantle (DT) | 6d | 2012-09-19 A | 2012-09-26 A | 821014450 | 100% |  |  |  | 820 - Cal9(N) (+235m) (for 821 VB, R2_TBM235_15Jun12) | Other Skill Labour (Civil) [288 h] | CCB | 821 | 2110 | CP | C090 |
| 821014470 |  | Cross Passage Excavation & Temp. Support (from DT) | 37d | 2012-09-26 A | 2013-03-08 A | 821014460, 821013760 SS+67d | 100% | 2012-09-26 | 2012-12-29 | mandatory finish 2013-03-09 | 820 - Cal9(N) (+235m) (for 821 VB, R2_TBM235_15Jun12) | Other Skill Labour (Civil) [1776 h]; Plant Operator [296 h] | CCB | 821 | 2110 | CP | C090 |
| 821014480 |  | Waterproofing (DT) | 9d | 2013-03-18 A | 2013-03-23 A | 821014470 | 100% | 2013-03-18 | 2013-03-27 |  | 820 - Cal9(N) (+235m) (for 821 VB, R2_TBM235_15Jun12) | Other Skill Labour (Civil) [432 h] | CCB | 821 | 2110 | CP | C090 |
| 821015020 |  | Permanent Beam (DT) | 9d | 2013-03-25 A | 2013-04-06 A | 821014480 | 100% |  |  | mandatory start 2013-03-25 | 820 - Cal9(N) (+235m) (for 821 VB, R2_TBM235_15Jun12) | Other Skill Labour (Civil) [432 h] | CCB | 821 | 2110 | CP | C090 |
| 821014510 |  | Probing/Drainage (UT) | 6d | 2013-08-26 A | 2013-08-30 A | 821017010 FS+23d | 100% | 2013-09-02 | 2013-09-07 |  | 820 - Cal9(N) (+235m) (for 821 VB, R2_TBM235_15Jun12) | Other Skill Labour (Civil) [288 h] | CCB | 821 | 2110 | CP | C090 |
| 821014520 |  | Segment Dismantle (UT) | 6d | 2013-08-31 A | 2013-09-03 A | 821014510 | 100% | 2013-09-09 | 2013-09-16 |  | 820 - Cal9(N) (+235m) (for 821 VB, R2_TBM235_15Jun12) | Other Skill Labour (Civil) [288 h] | CCB | 821 | 2110 | CP | C090 |
| 821014530 |  | Cross Passage Excavation & Temp. Support (from UT) | 8d | 2013-09-04 A | 2013-09-09 A | 821014520, 821014470, 821015020 | 100% | 2013-11-21 | 2013-11-29 |  | 820 - Cal9(N) (+235m) (for 821 VB, R2_TBM235_15Jun12) | Other Skill Labour (Civil) [384 h]; Plant Operator [32 h] | CCB | 821 | 2110 | CP | C090 |
| 821014540 |  | Waterproofing (UT) | 9d | 2013-09-11 A | 2013-09-13 A | 821014530 | 100% | 2013-09-11 | 2013-09-23 |  | 820 - Cal9(N) (+235m) (for 821 VB, R2_TBM235_15Jun12) | Other Skill Labour (Civil) [432 h] | CCB | 821 | 2110 | CP | C090 |
| 821014550 |  | Permanent Lining | 6d | 2013-09-13 A | 2013-09-21 A | 821017130 | 100% |  |  |  | 820 - Cal9(N) (+235m) (for 821 VB, R2_TBM235_15Jun12) | Other Skill Labour (Civil) [288 h] | CCB | 821 | 2110 | CP | C090 |
| 821017130 |  | Permanent Beam (UT) | 9d | 2013-09-14 A | 2013-09-26 A | 821014540 | 100% |  |  |  | 820 - Cal9(N) (+235m) (for 821 VB, R2_TBM235_15Jun12) | Other Skill Labour (Civil) [432 h] | CCB | 821 | 2110 | CP | C090 |
| 821014560 |  | Permanent Slab | 6d | 2013-09-16 A | 2013-09-24 A | 821014550 | 100% |  |  |  | 820 - Cal9(N) (+235m) (for 821 VB, R2_TBM235_15Jun12) | Other Skill Labour (Civil) [288 h] | CCB | 821 | 2110 | CP | C090 |
|  | 10 | **Miscellaneous Work** |  | 2012-12-27 | 2013-09-14 |  |  |  |  |  |  |  |  |  |  |  |  |
| 821013020 |  | Installation of cable brackets supplied by Contract 846 (South) | 136d | 2012-12-27 A | 2013-08-17 A |  | 100% | 2012-12-27 | 2013-06-15 | mandatory finish 2013-08-18 |  | Other Skill Labour (Civil) [720 h]; Welder [960 h]; Other Skill Labour (BS / E&M) [960 h]; Welding Machine [240 h] | CCB | 821 | 2110 |  | C090 |
| 821017860 |  | Installation of cable brackets supplied by Contract 846 (North) | 165d | 2012-12-27 A | 2013-08-17 A |  | 100% | 2012-12-27 | 2013-07-20 | mandatory finish 2013-08-01 |  | Other Skill Labour (Civil) [720 h]; Welder [960 h]; Other Skill Labour (BS / E&M) [960 h]; Welding Machine [1320 h] | CCB | 821 | 2110 |  | C090 |
| 821013360 |  | Tunnel earthing mats Ch135+672 | 5d | 2013-04-15 A | 2013-04-19 A | 821012990, 821012580 SS+10d | 100% |  |  |  |  | Other Skill Labour (Civil) [80 h]; Other Skill Labour (BS / E&M) [80 h] | CCB | 821 | 2110 |  | C090 |
| 821012990 |  | Tunnel earthing mats Ch134+548 | 5d | 2013-05-06 A | 2013-05-10 A | 821011250 FF | 100% |  |  |  |  | Other Skill Labour (BS / E&M) [80 h]; Other Skill Labour (Civil) [80 h] | CCB | 821 | 2110 |  | C090 |
| 821013120 |  | Tunnel earthing mats Ch133+416 | 5d | 2013-05-13 A | 2013-05-18 A | 821013360, 821013470 SS | 100% |  |  | mandatory start 2013-05-13 |  | Other Skill Labour (Civil) [80 h]; Other Skill Labour (BS / E&M) [80 h] | CCB | 821 | 2110 |  | C090 |
| 821013010 |  | Recess for fire main valve, impendence bond, divid wall with OHL balance weight equip. | 20d | 2013-06-20 A | 2013-07-13 A | 821011280 SS | 100% |  |  |  |  | Other Skill Labour (Civil) [480 h]; Steel Fixer [320 h]; Carpenter [320 h]; Other Skill Labour (BS / E&M) [320 h] | CCB | 821 | 2110 |  | C090 |
| 821013320 |  | Touch up work and final cleaning of the Twin Tunnels | 12d | 2013-09-02 A | 2013-09-14 A | 821011280 SS+9d, 821013120, 821012110 | 100% |  |  | mandatory start 2013-07-02 |  | Other Skill Labour (BS / E&M) [768 h] | CCB | 821 | 2110 |  | C090 |
|  | TBM | **Contract 820 TBM** |  | 2010-07-19 | 2013-07-23 |  |  |  |  |  |  |  |  |  |  |  |  |
|  | 6.1 | **Design and Procurement** |  | 2010-07-19 | 2011-11-04 |  |  |  |  |  |  |  |  |  |  |  |  |
| 821013550 |  | TBM Design | 65d | 2010-07-19 A | 2010-10-04 A | 8210KD000 | 100% | 2010-07-19 | 2010-09-21 |  | 2 - 821 Calendar Day |  | CCB | 820 | 2110 |  | C090 |
| 821013560 |  | TBM Procurement | 316d | 2010-10-05 A | 2011-11-04 A | 821013550 | 100% | 2010-10-05 | 2011-08-16 |  | 2 - 821 Calendar Day |  | CCB | 820 | 2110 |  | C090 |

| ID | WBS | Activity | Type | Duration | Start | Finish | Predecessors | Complete | Planned start | Planned finish | Constraint | Calendar | Cost Centre | Contracts | Location | Phase of Works | Sequence | Person in Charge |
| --- | --- | --- | --- | --- | --- | --- | --- | --- | --- | --- | --- | --- | --- | --- | --- | --- | --- | --- |
|  | 6.2 | **Downtrack Construction** |  |  | 2011-11-05 | 2012-07-29 |  |  |  |  |  |  |  |  |  |  |  |  |
| 821013620 |  | TBM2 (S-631-1) Assembly and T & C |  | 76d | 2011-11-05 A | 2012-01-19 A | 821013560 | 100% |  |  |  | 2 - 821 Calendar Day | CCB | 820 | 2110 | C090 |  |  |
| 821013630 |  | 820 TBM2 (S-631-1) downtrack construction |  | 187d | 2012-02-04 A | 2012-07-29 A | 821013620 | 100% | 2012-02-04 | 2012-08-08 |  | 2 - 821 Calendar Day | CCB | 820 | 2110 | C090 |  |  |
|  | 6.3 | **Uptrack Construction** |  |  | 2013-01-08 | 2013-07-23 |  |  |  |  |  |  |  |  |  |  |  |  |
| 821013641 |  | TBM2 (S-631-1) Re-assembly |  | 72d | 2013-01-08 A | 2013-03-28 A |  | 100% | 2013-01-10 | 2013-03-22 | mandatory finish 2013-03-20 | 2 - 821 Calendar Day | CCB | 820 | 2110 | C090 |  |  |
| 821013650 |  | 820 TBM2 (S-631-1) uptrack construction |  | 152d | 2013-03-29 A | 2013-07-23 A | 821013641 | 100% | 2013-03-29 | 2013-08-27 | mandatory start 2013-03-29 | 2 - 821 Calendar Day | CCB | 820 | 2110 | C090 |  |  |
|  | D | **Cost Centre D - Kwai Chung Vent. Bldg** |  |  | 2011-01-27 | 2015-05-10 |  |  |  |  |  |  |  |  |  |  |  |  |
|  | 1 | **Milestones** |  |  | 2012-12-12 | 2015-05-10 |  |  |  |  |  |  |  |  |  |  |  |  |
|  | 1 | **Milestone No.** |  |  | 2012-12-12 | 2015-05-10 |  |  |  |  |  |  |  |  |  |  |  |  |
| 8210MSD01 |  | D1 (43/12, 28 Oct '12) - Complete 50% substructure of Kwai Chung Vent Bldg | milestone | 0d | 2012-12-12 A | 2012-12-12 A | 8210KD010 FS+833d, 821012650 FS-3d | 100% |  |  | mandatory finish 2012-12-15 | 2 - 821 Calendar Day | CCD | 821 | 2130 | C080 |  |  |
| 8210MSD02 |  | D2 (04/13, 27 Jan '13) - Complete 50% superstructure of Kwai Chung Vent Bldg | milestone | 0d | 2013-03-28 A | 2013-03-28 A | 821012680, 8210KD010 FS+924d | 100% |  |  | finish on or after 2013-01-27 | 2 - 821 Calendar Day | CCD | 821 | 2130 | C080 |  |  |
| 8210MSD03 |  | D3 (11/13, 17 Mar '13) - Complete 90% superstructure of Kwai Chung Vent Bldg | milestone | 0d | 2013-07-31 A | 2013-07-31 A | 8210KD010 FS+973d, 821012782 | 100% |  |  | finish on or after 2013-03-17 | 2 - 821 Calendar Day | CCD | 821 | 2130 | C080 |  |  |
| 8210MSD04 |  | D4 (32/13, 11 Aug '13) - Complete floor, wall & ceiling finishes to all rooms | milestone | 0d | 2013-08-20 A | 2013-08-20 A | 821014940, 8210KD010 FS+1120d | 100% |  |  | finish on or after 2013-08-11 | 2 - 821 Calendar Day | CCD | 821 | 2130 | C100 |  |  |
| 8210MSD05 |  | D5 (22/14, 1 Jun '14) - All permanent doors installed | milestone | 0d | 2014-05-31 A | 2014-05-31 A | 821012730, 8210KD010 FS+1414d | 100% |  |  | finish on or after 2014-06-01 | 2 - 821 Calendar Day | CCD | 821 | 2130 | C100 |  |  |
| 8210MSD06 |  | D6 (35/14, 31 Aug '14) - Complete all works leading to successful statutory inspection | milestone | 0d | 2015-01-28 A | 2015-01-28 A | 8210KD010 FS+1505d, 821015110, 821015130, 821013980, 8210PM070, 821015090 | 100% |  |  | mandatory finish 2014-08-31 | 2 - 821 Calendar Day | CCD | 821 | 2130 | S010 |  |  |
| 8210MSD07 |  | D7 (19/15, 10 May '15) - Complete all works in this Cost Centre | milestone | 0d | 2015-05-10 A | 2015-05-10 A | 8210KD010 FS+1757d | 100% |  |  | finish on or after 2015-05-10 | 2 - 821 Calendar Day | CCD | 821 | 2130 | S010 |  |  |
|  | 2 | **Submission** |  |  | 2011-01-27 | 2014-01-10 |  |  |  |  |  |  |  |  |  |  |  |  |
|  | 2 | **Formwork Design - VB6** |  |  | 2012-07-03 | 2012-12-11 |  |  |  |  |  |  |  |  |  |  |  |  |
| 821014570 |  | Prepare & Submit Design report |  | 48d | 2012-07-03 A | 2012-10-18 A | 8210KD010 FS+480d | 100% | 2012-07-03 | 2012-08-27 |  |  | CCD | 821 | 2130 | C010 | 1 | ARUP |
| 821014580 |  | MTRC review |  | 24d | 2012-10-18 A | 2012-11-08 A | 821014570 | 100% | 2012-10-18 | 2012-11-15 |  |  | CCD | 821 | 2130 | C010 | 1 | ARUP |
| 821014590 |  | Resubmit Design Report |  | 18d | 2012-11-09 A | 2012-11-19 A | 821014580 | 100% | 2012-11-09 | 2012-11-29 |  |  | CCD | 821 | 2130 | C010 | 1 | ARUP |
| 821013195 |  | MTRC Approve |  | 24d | 2012-11-20 A | 2012-12-11 A | 821014590 | 100% | 2012-11-20 | 2012-12-17 |  |  | CCD | 821 | 2130 | C010 |  | ARUP |
|  | 1 | **General** |  |  | 2011-01-27 | 2012-07-05 |  |  |  |  |  |  |  |  |  |  |  |  |
| 821010980 |  | Submit tower crane drawings |  | 12d | 2011-01-27 A | 2011-02-18 A | 8210KD010 FS+190d | 100% | 2011-01-27 | 2011-02-12 |  |  | CCD | 821 | 2130 | C010 |  |  |
| 821010670 |  | Submit method statement for the VB6 |  | 60d | 2012-06-18 A | 2012-07-05 A | 8210KD010 FS+700d | 100% | 2012-06-18 | 2012-08-16 |  | 2 - 821 Calendar Day | CCD | 821 | 2130 | C010 |  |  |

| ID | WBS | Activity | Duration | Start | Finish | Predecessors | Complete | Planned start | Planned finish | Calendar | Cost Centre | Contracts | Location | Phase of Works |
| --- | --- | --- | --- | --- | --- | --- | --- | --- | --- | --- | --- | --- | --- | --- |
|  | 3 | **Completion** |  | 2013-07-22 | 2014-01-10 |  |  |  |  |  |  |  |  |  |
| 821013230 |  | Prepare and submit as-built drawings under Ref 4B (Deg 1) | 72d | 2013-07-22 A | 2014-01-10 A | 8210KD040 | 100% | 2014-07-21 | 2014-10-15 |  | CCD | 821 | 2130 | C010 |
|  | 4 | **Procurement** |  | 2012-08-13 | 2014-06-30 |  |  |  |  |  |  |  |  |  |
| 821014760 |  | Construct Kwai Chung Ventilation Building | 18d | 2012-08-13 A | 2012-09-01 A | 8210KD010 FS+756d | 100% |  |  |  | CCD | 821 | 2130 | C030 |
| 821011620 |  | Building services procurement | 28d | 2013-04-05 A | 2013-07-31 A | 8210KD010 FS+984d | 100% | 2013-04-05 | 2013-05-08 |  | CCD | 821 | 2130 | C030 |
| 821015560 |  | Roadwork's procurement | 28d | 2013-04-05 A | 2013-07-31 A | 8210KD010 FS+990d | 100% | 2013-04-05 | 2013-05-08 |  | CCD | 821 | 2130 | C030 |
| 821015570 |  | Paving procurement | 28d | 2013-04-05 A | 2013-07-31 A | 8210KD010 FS+990d | 100% | 2013-04-05 | 2013-05-08 |  | CCD | 821 | 2130 | C030 |
| 821015580 |  | Fencing and railing procurement | 28d | 2013-04-05 A | 2013-07-31 A | 8210KD010 FS+990d | 100% | 2013-04-05 | 2013-05-08 |  | CCD | 821 | 2130 | C030 |
|  | 4 | **Doors and Frames** |  | 2012-09-03 | 2014-04-30 |  |  |  |  |  |  |  |  |  |
| 821015590 |  | Submit shop drawings | 24d | 2012-09-03 A | 2013-02-22 A | 821014760 | 100% | 2012-09-03 | 2012-09-29 |  | CCD | 821 | 2130 | C030 |
| 821015600 |  | Comment shop drawings | 28d | 2013-02-23 A | 2013-03-08 A | 821015590 | 100% | 2013-02-23 | 2013-03-22 | 2 - 821 Calendar Day | CCD | 821 | 2130 | C030 |
| 821015610 |  | Resubmit shop drawings | 24d | 2013-03-09 A | 2013-03-25 A | 821015600 | 100% | 2013-03-09 | 2013-04-10 |  | CCD | 821 | 2130 | C030 |
| 821015620 |  | Approve shop drawings | 28d | 2013-03-26 A | 2013-06-18 A | 821015610 | 100% | 2013-03-26 | 2013-04-22 | 2 - 821 Calendar Day | CCD | 821 | 2130 | C030 |
| 821015630 |  | Procure doors and frames | 72d | 2013-06-19 A | 2014-04-30 A | 821015620 | 100% | 2013-06-19 | 2013-09-11 |  | CCD | 821 | 2130 | C030 |
|  | 5 | **Sanitary Fittings** |  | 2012-09-03 | 2013-11-30 |  |  |  |  |  |  |  |  |  |
| 821015640 |  | Submit shop drawings | 24d | 2012-09-03 A | 2013-02-22 A | 821014760 | 100% | 2012-09-03 | 2012-09-29 |  | CCD | 821 | 2130 | C030 |
| 821015650 |  | Comment shop drawings | 28d | 2013-02-23 A | 2013-03-08 A | 821015640 | 100% | 2013-02-23 | 2013-03-22 | 2 - 821 Calendar Day | CCD | 821 | 2130 | C030 |
| 821015660 |  | Resubmit shop drawings | 24d | 2013-03-09 A | 2013-03-25 A | 821015650 | 100% | 2013-03-09 | 2013-04-10 |  | CCD | 821 | 2130 | C030 |
| 821015670 |  | Approve shop drawings | 28d | 2013-03-26 A | 2013-07-20 A | 821015660 | 100% | 2013-03-26 | 2013-04-22 | 2 - 821 Calendar Day | CCD | 821 | 2130 | C030 |
| 821015680 |  | Procure sanitary fittings | 72d | 2013-07-22 A | 2013-11-30 A | 821015670 | 100% | 2013-07-22 | 2013-10-16 |  | CCD | 821 | 2130 | C030 |
|  | 6 | **Metal Works** |  | 2012-09-03 | 2014-04-30 |  |  |  |  |  |  |  |  |  |
| 821015690 |  | Submit shop drawings | 24d | 2012-09-03 A | 2013-02-22 A | 821014760 | 100% | 2012-09-03 | 2012-09-29 |  | CCD | 821 | 2130 | C030 |
| 821015700 |  | Comment shop drawings | 28d | 2013-02-23 A | 2013-03-08 A | 821015690 | 100% | 2013-02-23 | 2013-03-22 | 2 - 821 Calendar Day | CCD | 821 | 2130 | C030 |
| 821015710 |  | Resubmit shop drawings | 24d | 2013-03-09 A | 2013-03-25 A | 821015700 | 100% | 2013-03-09 | 2013-04-10 |  | CCD | 821 | 2130 | C030 |
| 821015720 |  | Approve shop drawings | 28d | 2013-03-26 A | 2013-04-02 A | 821015710 | 100% | 2013-03-26 | 2013-04-22 | 2 - 821 Calendar Day | CCD | 821 | 2130 | C030 |
| 821015730 |  | Procure metal works | 72d | 2013-04-03 A | 2014-04-30 A | 821015720 | 100% | 2013-04-03 | 2013-06-29 |  | CCD | 821 | 2130 | C030 |

| ID | WBS | Activity | Duration | Start | Finish | Predecessors | Complete | Planned start | Planned finish | Constraint | Calendar | Resources | Cost Centre | Contracts | Location | Phase of Works | Sequence | Sub-location |
| --- | --- | --- | --- | --- | --- | --- | --- | --- | --- | --- | --- | --- | --- | --- | --- | --- | --- | --- |
|  | 7 | **Tiles** |  | 2012-09-03 | 2013-08-24 |  |  |  |  |  |  |  |  |  |  |  |  |  |
| 821015740 |  | Submit material sample | 24d | 2012-09-03 A | 2013-03-27 A | 821014760 | 100% | 2012-09-03 | 2012-09-29 |  |  |  | CCD | 821 | 2130 | C030 |  |  |
| 821015750 |  | Comment material sample | 28d | 2013-03-28 A | 2013-05-03 A | 821015740 | 100% | 2013-03-28 | 2013-04-24 |  | 2 - 821 Calendar Day |  | CCD | 821 | 2130 | C030 |  |  |
| 821015760 |  | Resubmit material sample | 24d | 2013-05-04 A | 2013-06-13 A | 821015750 | 100% | 2013-05-04 | 2013-06-01 |  |  |  | CCD | 821 | 2130 | C030 |  |  |
| 821015770 |  | Approve material sample | 28d | 2013-06-14 A | 2013-07-31 A | 821015760 | 100% | 2013-06-14 | 2013-07-11 |  | 2 - 821 Calendar Day |  | CCD | 821 | 2130 | C030 |  |  |
| 821015780 |  | Procure tiles | 72d | 2013-08-01 A | 2013-08-24 A | 821015770 | 100% | 2013-08-01 | 2013-10-26 |  |  |  | CCD | 821 | 2130 | C030 |  |  |
|  | 1 | **Louvers** |  | 2013-01-28 | 2014-04-30 |  |  |  |  |  |  |  |  |  |  |  |  |  |
| 821014950 |  | Submit shop drawings | 24d | 2013-01-28 A | 2013-02-27 A | 821014760 FS+114d | 100% |  |  |  |  |  | CCD | 821 | 2130 | C030 |  |  |
| 821014960 |  | Comment shop drawings | 28d | 2013-02-28 A | 2013-03-08 A | 821014950 | 100% | 2013-02-28 | 2013-03-27 |  | 2 - 821 Calendar Day |  | CCD | 821 | 2130 | C030 |  |  |
| 821015450 |  | Resubmit shop drawings | 24d | 2013-03-09 A | 2013-03-25 A | 821014960 | 100% | 2013-03-09 | 2013-04-10 |  |  |  | CCD | 821 | 2130 | C030 |  |  |
| 821015460 |  | Approve shop drawings | 28d | 2013-03-26 A | 2013-07-13 A | 821015450 | 100% | 2013-03-26 | 2013-04-22 |  | 2 - 821 Calendar Day |  | CCD | 821 | 2130 | C030 |  |  |
| 821015470 |  | Procure louvers | 72d | 2013-07-15 A | 2014-04-30 A | 821015460 | 100% | 2013-07-15 | 2013-10-08 |  |  |  | CCD | 821 | 2130 | C030 |  |  |
|  | 2 | **Shutters** |  |  |  |  |  |  |  |  |  |  |  |  |  |  |  |  |
|  | 8 | **Soft Landscaping** |  | 2013-08-05 | 2014-06-30 |  |  |  |  |  |  |  |  |  |  |  |  |  |
| 821015790 |  | Submit material sample | 24d | 2013-08-05 A | 2013-08-23 A | 821014930 | 100% | 2013-08-16 | 2013-09-12 | mandatory start 2013-08-16 |  |  | CCD | 821 | 2130 | C030 |  |  |
| 821015800 |  | Comment material sample | 28d | 2013-08-24 A | 2013-09-20 A | 821015790 | 100% |  |  | mandatory start 2013-09-02 | 2 - 821 Calendar Day |  | CCD | 821 | 2130 | C030 |  |  |
| 821015810 |  | Resubmit material sample | 24d | 2013-09-21 A | 2014-05-15 A | 821015800 | 100% | 2013-09-21 | 2013-10-21 |  |  |  | CCD | 821 | 2130 | C030 |  |  |
| 821015820 |  | Approve material sample | 28d | 2014-05-16 A | 2014-06-16 A | 821015810 | 100% | 2014-05-16 | 2014-06-12 |  | 2 - 821 Calendar Day |  | CCD | 821 | 2130 | C030 |  |  |
| 821015830 |  | Procure soft landscaping | 72d | 2014-06-17 A | 2014-06-30 A | 821015820 | 100% | 2014-06-17 | 2014-09-10 |  |  |  | CCD | 821 | 2130 | C030 |  |  |
|  | 3 | **Construction** |  | 2011-02-14 | 2015-03-13 |  |  |  |  |  |  |  |  |  |  |  |  |  |
|  | 1 | **Structure - Ref 4B (Degree 1)** |  | 2011-02-14 | 2013-12-13 |  |  |  |  |  |  |  |  |  |  |  |  |  |
| 821011200 |  | Construct tower crane footing | 12d | 2011-02-14 A | 2011-02-19 A | 821010980 | 100% | 2011-02-14 | 2011-02-26 |  | 3 - 821 VB & External (6 Work day &10d incl. weath. May-Oct) | Concretor [192 h]; Carpenter [192 h]; Other Skill Labour (Civil) [384 h] | CCD | 821 | 2130 | C080 | 1 |  |
| 821011390 |  | Erect tower crane | 12d | 2011-03-07 A | 2011-03-08 A | 821011200 FS+5d | 100% | 2011-03-07 | 2011-03-19 |  | 3 - 821 VB & External (6 Work day &10d incl. weath. May-Oct) | Welding Machine [96 h]; Plant Operator [96 h]; Ganger [384 h]; Tower Crane [96 h] | CCD | 821 | 2130 | C080 | 1 |  |
| 821012650 |  | Site formation and construction of footing | 40d | 2012-09-17 A | 2013-03-28 A | 821014760, 821012750, 821010670, 821013195, 821013050 | 100% | 2012-09-17 | 2012-11-07 | mandatory finish 2013-05-11 | 3 - 821 VB & External (6 Work day &10d incl. weath. May-Oct) | Steel Fixer [1280 h]; Carpenter [1280 h]; Concretor [1920 h]; Plant Operator [3200 h]; Concrete [1441 m3]; Rebar [119 T]; Backhoe [640 h]; Backhoe with Breaker [640 h]; Tower Crane [320 h]; Crane Lorry [320 h]; Dump Truck [1280 h]; Other Skill Labour (Civil) [2560 h]; Excavation - Soft [925 m3] | CCD | 821 | 2130 | C080 | 2 | VBS1 |
| 821012750 |  | Relocate Mucking facilities | 12d | 2012-10-03 A | 2012-10-25 A | 821011390, 821016114 | 100% | 2012-10-03 | 2012-10-18 | mandatory start 2012-10-03 | 3 - 821 VB & External (6 Work day &10d incl. weath. May-Oct) | Plant Operator [96 h]; Tower Crane [96 h]; Other Skill Labour (Civil) [576 h] | CCD | 821 | 2130 | C080 | 2 |  |
| 821012751 |  | Underground drainage | 30d | 2012-10-25 A | 2013-03-23 A | 821012650 SS+18d | 100% | 2012-10-25 | 2012-11-28 | mandatory start 2013-04-10 | 3 - 821 VB & External (6 Work day &10d incl. weath. May-Oct) | Other Skill Labour (Civil) [1440 h]; Backhoe [480 h]; Drainlayer [1440 h]; Plant Operator [480 h] | CCD | 821 | 2130 | C080 | 2 |  |
| 821012660 |  | Construction of ground slab | 30d | 2012-11-12 A | 2013-04-26 A | 821012650, 821012751 FF | 100% | 2012-11-12 | 2012-12-15 | mandatory finish 2013-04-20 | 3 - 821 VB & External (6 Work day &10d incl. weath. May-Oct) | Concrete [1153 m3]; Rebar [184 T]; Backhoe [480 h]; Crane Lorry [240 h]; Dump Truck [720 h]; Other Skill Labour (Civil) [1440 h]; Steel Fixer [2400 h]; Carpenter [1440 h]; Concretor [480 h]; Welder [480 h]; Drainlayer [960 h]; Plant Operator [1680 h]; Plumber [960 h]; Tower Crane [240 h] | CCD | 821 | 2130 | C080 | 2 | VBS1 |
| 821012680 |  | Construction of U1 slab | 30d | 2013-02-25 A | 2013-04-03 A | 821012660 | 100% |  |  | mandatory start 2012-12-20 | 3 - 821 VB & External (6 Work day &10d incl. weath. May-Oct) | Plumber [960 h]; Other Skill Labour (BS / E&M) [480 h]; Plant Operator [480 h]; Welding Machine [480 h]; Concrete [1153 m3]; Rebar [184 T]; Crane Lorry [240 h]; Concrete Pump Set [240 h]; Other Skill Labour (Civil) [1440 h]; Steel Fixer [2400 h]; Tower Crane [240 h]; Carpenter [1440 h]; Concretor [480 h]; Welder [480 h] | CCD | 821 | 2130 | C080 | 2 | VBS2 |
| 821012690 |  | Construction of U2 slab | 30d | 2013-03-25 A | 2013-05-04 A | 821012680 | 100% | 2013-03-25 | 2013-05-03 | mandatory finish 2013-05-04 | 3 - 821 VB & External (6 Work day &10d incl. weath. May-Oct) | Concrete [1153 m3]; Rebar [184 T]; Tower Crane [240 h]; Crane Lorry [240 h]; Concrete Pump Set [240 h]; Other Skill Labour (Civil) [1440 h]; Steel Fixer [2400 h]; Carpenter [1440 h]; Concretor [480 h]; Welder [480 h]; Other Skill Labour (BS / E&M) [480 h]; Plant Operator [480 h]; Plumber [480 h]; Welding Machine [480 h] | CCD | 821 | 2130 | C080 | 2 | VBS2 |
| 821012700 |  | Construction of upper roof | 20d | 2013-05-02 A | 2013-06-28 A | 821012690 | 100% | 2013-05-02 | 2013-05-27 | mandatory start 2013-05-06 | 3 - 821 VB & External (6 Work day &10d incl. weath. May-Oct) | Other Skill Labour (Civil) [960 h]; Steel Fixer [800 h]; Carpenter [1280 h]; Concretor [320 h]; Welder [320 h]; Plumber [640 h]; Welding Machine [320 h]; Concrete [60 m3]; Rebar [40 T]; Tower Crane [160 h]; Crane Lorry [160 h]; Concrete Pump Set [160 h] | CCD | 821 | 2130 | C080 |  | VBS2 |
| 821014800 |  | Ground floor screeding | 22d | 2013-05-04 A | 2013-07-20 A | 821012780, 821012680 FS+12d | 100% | 2013-05-04 | 2013-05-31 | mandatory finish 2013-06-08 | 3 - 821 VB & External (6 Work day &10d incl. weath. May-Oct) | Other Skill Labour (Civil) [1152 h]; Mason [1152 h]; Plasterer [1152 h] | CCD | 821 | 2130 | C100 | 1 |  |
| 821014810 |  | U1 floor screeding | 20d | 2013-05-29 A | 2013-06-30 A | 821012680 FS+12d, 821012782 | 100% | 2013-05-29 | 2013-06-22 | mandatory start 2013-05-28 | 3 - 821 VB & External (6 Work day &10d incl. weath. May-Oct) | Other Skill Labour (Civil) [1152 h]; Mason [1152 h]; Plasterer [1152 h] | CCD | 821 | 2130 | C100 | 1 |  |
| 821012782 |  | KCVA adit - portal section U1 floor | 20d | 2013-07-02 A | 2013-08-04 A | 821012780, 821013690 | 100% | 2013-07-02 | 2013-07-26 | mandatory start 2013-05-06 | 3 - 821 VB & External (6 Work day &10d incl. weath. May-Oct) | Concretor [320 h]; Steel Fixer [960 h]; Other Skill Labour (Civil) [960 h]; Carpenter [960 h]; Concrete Pump Set [480 h]; Welder [480 h]; Drainlayer [480 h]; Other Skill Labour (BS / E&M) [320 h]; Welding Machine [480 h]; Rebar [40 T]; Backhoe [160 h]; Backhoe with Breaker [320 h]; Tower Crane [160 h]; Crane Lorry [160 h]; Dump Truck [640 h]; Plant Operator [1120 h]; Concrete [320 m3] | CCD | 821 | 2130 | C080 |  | VBS2 |
| 821014820 |  | U2 floor screeding (Degree 1 Completion) | 10d | 2013-07-02 A | 2013-07-15 A | 821012784, 821012690 FS+12d, 821014810 | 100% |  |  | mandatory start 2013-06-03 | 3 - 821 VB & External (6 Work day &10d incl. weath. May-Oct) | Other Skill Labour (Civil) [576 h]; Plasterer [576 h]; Mason [576 h] | CCD | 821 | 2130 | C100 | 1 |  |
| 821012784 |  | KCVA adit - portal section U2 floor and link structure | 20d | 2013-08-01 A | 2013-08-30 A | 821012782 | 100% | 2013-08-01 | 2013-08-26 |  | 3 - 821 VB & External (6 Work day &10d incl. weath. May-Oct) | Crane Lorry [160 h]; Dump Truck [320 h]; Drainlayer [320 h]; Plant Operator [1120 h]; Concretor [320 h]; Steel Fixer [960 h]; Other Skill Labour (Civil) [960 h]; Carpenter [960 h]; Concrete Pump Set [320 h]; Welder [320 h]; Other Skill Labour (BS / E&M) [320 h]; Welding Machine [320 h]; Concrete [320 m3]; Rebar [40 T]; Backhoe [320 h]; Backhoe with Breaker [160 h]; Tower Crane [160 h] | CCD | 821 | 2130 | C080 |  | VBS2 |
| 821012780 |  | KCVA adit - portal section ground floor | 20d | 2013-08-05 A | 2013-08-25 A | 821012680 SS+24d, 821013690 | 100% | 2013-08-05 | 2013-08-29 | mandatory start 2013-04-29 | 3 - 821 VB & External (6 Work day &10d incl. weath. May-Oct) | Dump Truck [640 h]; Plant Operator [1440 h]; Concretor [320 h]; Steel Fixer [960 h]; Other Skill Labour (Civil) [960 h]; Carpenter [960 h]; Concrete Pump Set [480 h]; Welder [320 h]; Drainlayer [320 h]; Other Skill Labour (BS / E&M) [320 h]; Welding Machine [320 h]; Backhoe with Breaker [320 h]; Concrete [320 m3]; Rebar [40 T]; Tower Crane [160 h]; Crane Lorry [160 h]; Backhoe [160 h] | CCD | 821 | 2130 | C080 |  | VBS1 |
| 821011410 |  | Demobilize tower crane | 12d | 2013-12-09 A | 2013-12-13 A | 821012700 | 100% | 2013-12-02 | 2013-12-14 |  | 3 - 821 VB & External (6 Work day &10d incl. weath. May-Oct) | Plant Operator [96 h]; Other Skill Labour (BS / E&M) [384 h]; Tower Crane [96 h]; Crane Lorry [96 h] | CCD | 821 | 2130 | C080 |  |  |

| ID | WBS | Activity | Duration | Start | Finish | Predecessors | Complete | Planned start | Planned finish | Constraint | Calendar | Resources | Cost Centre | Sequence | Contracts | Location | Phase of Works | Sub-location |
| --- | --- | --- | --- | --- | --- | --- | --- | --- | --- | --- | --- | --- | --- | --- | --- | --- | --- | --- |
|  | 2 | **Interior ABWF - Ref 4B (Degree 2)** |  | 2013-08-01 | 2014-03-29 |  |  |  |  |  |  |  |  |  |  |  |  |  |
| 821012710 |  | Miscellaneous metalworks | 43d | 2013-08-01 A | 2014-03-29 A | 821015730, 821013150 | 100% | 2013-08-01 | 2013-09-25 | mandatory finish 2013-10-19 | 3 - 821 VB & External (6 Work day &10d incl. weath. May-Oct) | Metal worker [3600 h]; Welder [360 h]; Welding Machine [360 h] | CCD | 2 | 821 | 2130 | C100 |  |
| 821013150 |  | Specialist architectural metalwork | 40d | 2013-08-01 A | 2014-01-09 A | 821015730, 821013170 SS | 100% | 2013-08-01 | 2013-09-21 | mandatory start 2013-04-23 | 3 - 821 VB & External (6 Work day &10d incl. weath. May-Oct) | Metal worker [960 h]; Welding Machine [960 h]; Other Skill Labour (Civil) [640 h] | CCD | 2 | 821 | 2130 | C100 |  |
| 821012730 |  | All permanent doors and frames installation | 43d | 2013-08-05 A | 2014-03-29 A | 8210KD040, 821015630 FS+10d, 821013170 | 100% | 2013-08-05 | 2013-09-28 | mandatory start 2013-05-31 | 3 - 821 VB & External (6 Work day &10d incl. weath. May-Oct) | Welding Machine [2000 h]; Other Skill Labour (Civil) [960 h]; Metal worker [4000 h]; Welder [4000 h] | CCD | 2 | 821 | 2130 | C100 |  |
| 821013170 |  | Sanitary fitting and accessories | 30d | 2014-03-03 A | 2014-03-29 A | 821015680, 821014820 | 100% | 2014-03-03 | 2014-04-07 |  | 3 - 821 VB & External (6 Work day &10d incl. weath. May-Oct) | Plumber [960 h]; Plasterer [960 h] | CCD |  | 821 | 2130 | C100 |  |
|  | 3 | **Interior ABWF - Ref 4B (Degree 3)** |  | 2013-05-27 | 2014-04-26 |  |  |  |  |  |  |  |  |  |  |  |  |  |
| 821013330 |  | Painting G/F | 24d | 2013-05-27 A | 2013-12-21 A | 821014820 | 100% | 2013-05-27 | 2013-06-25 | mandatory start 2013-04-29 | 3 - 821 VB & External (6 Work day &10d incl. weath. May-Oct) | Plasterer [768 h]; Painter [1152 h]; Other Skill Labour (Civil) [384 h] | CCD | 3 | 821 | 2130 | C100 |  |
| 821014850 |  | Painting 1/F | 24d | 2013-05-30 A | 2013-12-21 A | 821013330 | 100% | 2013-05-30 | 2013-06-28 | mandatory start 2013-09-02 | 3 - 821 VB & External (6 Work day &10d incl. weath. May-Oct) | Other Skill Labour (Civil) [384 h]; Plasterer [768 h]; Painter [1152 h] | CCD | 3 | 821 | 2130 | C100 |  |
| 821014940 |  | Painting 2/F | 24d | 2013-07-08 A | 2013-12-21 A | 821014850 | 100% | 2013-07-08 | 2013-08-06 | mandatory start 2013-09-09 | 3 - 821 VB & External (6 Work day &10d incl. weath. May-Oct) | Painter [1152 h]; Other Skill Labour (Civil) [384 h]; Plasterer [768 h] | CCD | 3 | 821 | 2130 | C100 |  |
| 821013140 |  | Louvers | 40d | 2013-08-17 A | 2014-04-26 A | 821014940, 821015470, 821012730 | 100% | 2013-08-17 | 2013-10-07 |  | 3 - 821 VB & External (6 Work day &10d incl. weath. May-Oct) | Metal worker [2560 h]; Glazier [2560 h]; Welding Machine [640 h]; Welder [640 h] | CCD |  | 821 | 2130 | C100 |  |
| 821013340 |  | Final ABWF for Deg 3 | 40d | 2013-11-01 A | 2014-04-26 A | 821013140 SS+2d, 821015780, 821012730 | 100% | 2013-11-01 | 2013-12-17 | mandatory start 2013-08-20 | 3 - 821 VB & External (6 Work day &10d incl. weath. May-Oct) | Plasterer [1280 h]; Painter [1600 h]; Other Skill Labour (Civil) [1280 h] | CCD |  | 821 | 2130 | C100 |  |
|  | 5 | **Exterior ABWF - Ref 4B (Degree 3)** |  | 2013-07-08 | 2014-04-26 |  |  |  |  |  |  |  |  |  |  |  |  |  |
|  | 1 | **Main Building** |  | 2013-07-08 | 2014-04-26 |  |  |  |  |  |  |  |  |  |  |  |  |  |
| 821014970 |  | External painting | 48d | 2013-07-08 A | 2014-04-26 A | 821014880 | 100% | 2013-07-08 | 2013-09-05 |  | 3 - 821 VB & External (6 Work day &10d incl. weath. May-Oct) | Painter [4608 h]; Scaffolder [3072 h] | CCD |  | 821 | 2130 | C100 |  |
| 821013970 |  | Remaining ABWF | 60d | 2013-10-02 A | 2014-04-26 A | 821014970 SS | 100% | 2013-10-02 | 2013-12-13 |  | 3 - 821 VB & External (6 Work day &10d incl. weath. May-Oct) | Other Skill Labour (Civil) [1536 h]; Plasterer [1920 h]; Painter [1920 h] | CCD |  | 821 | 2130 | C100 |  |
| 821014830 |  | 1st Screeding | 6d | 2013-11-01 A | 2013-11-07 A | 821012700 FS+3d | 100% |  |  | mandatory start 2013-04-22 | 3 - 821 VB & External (6 Work day &10d incl. weath. May-Oct) | Plasterer [288 h]; Mason [288 h] | CCD |  | 821 | 2130 | C100 |  |
| 821014840 |  | Waterproofing | 6d | 2013-11-08 A | 2013-11-14 A | 821011630, 821014830 FS+18d | 100% |  |  |  | 3 - 821 VB & External (6 Work day &10d incl. weath. May-Oct) | Plasterer [192 h]; Other Skill Labour (Civil) [192 h] | CCD |  | 821 | 2130 | C100 |  |
| 821014860 |  | Water Test | 6d | 2013-11-15 A | 2013-11-21 A | 821014840 | 100% |  |  |  | 3 - 821 VB & External (6 Work day &10d incl. weath. May-Oct) | Other Skill Labour (Civil) [192 h] | CCD |  | 821 | 2130 | C100 |  |
| 821014870 |  | Insulation | 6d | 2013-11-22 A | 2013-11-28 A | 821014860 | 100% |  |  |  | 3 - 821 VB & External (6 Work day &10d incl. weath. May-Oct) | Other Skill Labour (Civil) [384 h] | CCD |  | 821 | 2130 | C100 |  |
| 821014880 |  | 2nd Screeding | 6d | 2013-11-29 A | 2013-12-05 A | 821014870 | 100% |  |  |  | 3 - 821 VB & External (6 Work day &10d incl. weath. May-Oct) | Plasterer [288 h]; Mason [288 h] | CCD |  | 821 | 2130 | C100 |  |
|  | 2 | **Vehicular Access Adit - Portal Section** |  | 2013-11-04 | 2013-12-14 |  |  |  |  |  |  |  |  |  |  |  |  |  |
| 821014890 |  | Screeding | 6d | 2013-11-04 A | 2013-11-09 A | 821012784 FS+24d, 821014880 | 100% |  |  | mandatory start 2013-06-06 | 3 - 821 VB & External (6 Work day &10d incl. weath. May-Oct) | Plasterer [288 h]; Mason [288 h] | CCD |  | 821 | 2130 | C100 | EXT |
| 821014900 |  | Waterproofing | 6d | 2013-11-11 A | 2013-11-16 A | 821014890 FS+18d, 821011630 | 100% |  |  |  | 3 - 821 VB & External (6 Work day &10d incl. weath. May-Oct) | Plasterer [192 h]; Other Skill Labour (Civil) [192 h] | CCD |  | 821 | 2130 | C100 | EXT |
| 821014910 |  | Water Test | 6d | 2013-11-18 A | 2013-11-23 A | 821014900 | 100% |  |  |  | 3 - 821 VB & External (6 Work day &10d incl. weath. May-Oct) | Other Skill Labour (Civil) [192 h] | CCD |  | 821 | 2130 | C100 | EXT |
| 821014920 |  | Drainage layer / fitter | 12d | 2013-11-25 A | 2013-12-07 A | 821014910 | 100% |  |  |  | 3 - 821 VB & External (6 Work day &10d incl. weath. May-Oct) | Drainlayer [480 h] | CCD |  | 821 | 2130 | C100 | EXT |
| 821014930 |  | Planting green roof | 6d | 2013-12-09 A | 2013-12-14 A | 821014920 | 100% |  |  |  | 3 - 821 VB & External (6 Work day &10d incl. weath. May-Oct) | Other Skill Labour (Civil) [480 h]; Plant Operator [48 h] | CCD |  | 821 | 2130 | C100 | EXT |

| ID | WBS | Activity | Duration | Start | Finish | Predecessors | Complete | Planned start | Planned finish | Constraint | Calendar | Resources | Cost Centre | Sequence | Contracts | Location | Sub-location | Phase of Works |
| --- | --- | --- | --- | --- | --- | --- | --- | --- | --- | --- | --- | --- | --- | --- | --- | --- | --- | --- |
|  | 4 | **External Works** |  | 2013-09-02 | 2015-03-13 |  |  |  |  |  |  |  |  |  |  |  |  |  |
|  | 1 | **Building Services** |  | 2013-09-02 | 2014-04-24 |  |  |  |  |  |  |  |  |  |  |  |  |  |
| 821015150 |  | Storm water system | 60d | 2013-09-02 A | 2014-02-28 A | 821012751, 821011280 SS, 821011620 | 100% | 2013-09-02 | 2013-11-18 |  | 3 - 821 VB & External (6 Work day &10d incl. weath. May-Oct) | Other Skill Labour (Civil) [2880 h]; Backhoe [480 h]; Plant Operator [480 h] | CCD | 1 | 821 | 2130 | EXT | C110 |
| 821015160 |  | Foul water system | 60d | 2013-09-02 A | 2014-03-13 A | 821011620, 821015150 SS | 100% | 2013-09-02 | 2013-11-18 |  | 3 - 821 VB & External (6 Work day &10d incl. weath. May-Oct) | Other Skill Labour (Civil) [2880 h]; Backhoe [480 h]; Plant Operator [480 h] | CCD | 1 | 821 | 2130 | EXT | C110 |
| 821015220 |  | Water supply system | 40d | 2013-12-02 A | 2014-03-08 A | 821015150 SS, 821011620 | 100% | 2013-12-02 | 2014-01-20 |  | 3 - 821 VB & External (6 Work day &10d incl. weath. May-Oct) | Plant Operator [320 h]; Other Skill Labour (Civil) [1920 h]; Backhoe [320 h] | CCD | 1 | 821 | 2130 | EXT | C110 |
| 821015230 |  | All external telephone drawpits & ducts within KC Vent bldg | 60d | 2013-12-09 A | 2014-03-19 A | 821015150 SS | 100% | 2013-12-09 | 2014-02-22 |  | 3 - 821 VB & External (6 Work day &10d incl. weath. May-Oct) | Other Skill Labour (Civil) [2880 h]; Plant Operator [480 h] | CCD |  | 821 | 2130 | EXT | C110 |
| 821015140 |  | Earthing and protection systems | 18d | 2014-03-10 A | 2014-03-29 A | 821011620, 821015150 SS | 100% |  |  |  | 3 - 821 VB & External (6 Work day &10d incl. weath. May-Oct) | Other Skill Labour (BS / E&M) [864 h] | CCD |  | 821 | 2130 | EXT | C110 |
| 821015170 |  | Miscellaneous builder's work | 18d | 2014-03-31 A | 2014-04-24 A | 821015140, 821015150, 821015160 | 100% |  |  |  | 3 - 821 VB & External (6 Work day &10d incl. weath. May-Oct) | Concretor [144 h]; Concrete [18 m3]; Other Skill Labour (Civil) [864 h]; Electrician [144 h] | CCD |  | 821 | 2130 | EXT | C110 |
|  | 2 | **Roadworks and Paving** |  | 2013-09-23 | 2015-03-13 |  |  |  |  |  |  |  |  |  |  |  |  |  |
| 821015060 |  | Earthworks | 12d | 2013-09-23 A | 2014-04-05 A | 821011410, 821015150 SS, 821012700 | 100% | 2013-09-23 | 2013-10-07 | mandatory start 2013-10-19 | 3 - 821 VB & External (6 Work day &10d incl. weath. May-Oct) | Truck Lorry [96 h]; Dump Truck [192 h]; Plant Operator [288 h]; Other Skill Labour (Civil) [960 h]; Backhoe [96 h] | CCD |  | 821 | 2130 | EXT | C020 |
| 821015180 |  | Footpath | 20d | 2014-04-01 A | 2014-06-07 A | 821015570, 821015140 FF+20d, 821015080 | 100% | 2014-04-09 | 2014-05-07 |  | 3 - 821 VB & External (6 Work day &10d incl. weath. May-Oct) | Other Skill Labour (Civil) [800 h] | CCD |  | 821 | 2130 | EXT | C020 |
| 821015070 |  | Concrete pavements | 24d | 2014-04-01 A | 2014-05-30 A | 821011060, 821015560, 821015150, 821015160 FF, 821015060 | 100% | 2014-04-01 | 2014-05-03 | mandatory start 2013-10-21 | 3 - 821 VB & External (6 Work day &10d incl. weath. May-Oct) | Survey Equipment [192 h]; Concrete [240 m3]; Other Skill Labour (Civil) [1920 h]; Concretor [768 h]; Carpenter [768 h]; Contractor Surveyor / Land Surveyor [384 h] | CCD |  | 821 | 2130 | EXT | C020 |
| 821015080 |  | Kerbs and channels | 24d | 2014-04-07 A | 2014-11-22 A | 821015560, 821015070 | 100% | 2014-04-07 | 2014-05-09 |  | 3 - 821 VB & External (6 Work day &10d incl. weath. May-Oct) | Other Skill Labour (Civil) [1920 h]; Contractor Surveyor / Land Surveyor [384 h]; Survey Equipment [192 h] | CCD |  | 821 | 2130 | EXT | C020 |
| 821015090 |  | Traffic signs | 12d | 2014-11-03 A | 2015-03-13 A | 821015180 FF | 100% | 2014-11-03 | 2014-11-15 |  | 3 - 821 VB & External (6 Work day &10d incl. weath. May-Oct) | Other Skill Labour (Civil) [480 h]; Metal worker [384 h]; Crane Lorry [96 h]; Plant Operator [96 h]; Welding Machine [96 h]; Welder [96 h] | CCD |  | 821 | 2130 | EXT | C020 |
|  | 4 | **Testing and Commissioning** |  | 2014-10-18 | 2015-01-28 |  |  |  |  |  |  |  |  |  |  |  |  |  |
| 821015190 |  | Connection work to existing foul water | 30d | 2014-10-18 A | 2014-11-10 A | 821015160, 821011060 | 100% | 2014-10-18 | 2014-11-21 |  | 3 - 821 VB & External (6 Work day &10d incl. weath. May-Oct) | Other Skill Labour (Civil) [1920 h]; Drainlayer [960 h]; Plant Operator [720 h]; Backhoe [240 h]; Backhoe with Breaker [240 h]; Dump Truck [240 h] | CCD |  | 821 | 2130 | EXT | C110 |
| 821015210 |  | Connection work to existing watermains | 30d | 2014-10-18 A | 2015-01-15 A | 821015170, 821015200 SS+12d | 100% | 2014-10-18 | 2014-11-21 |  | 3 - 821 VB & External (6 Work day &10d incl. weath. May-Oct) | Backhoe with Breaker [240 h]; Dump Truck [240 h]; Other Skill Labour (Civil) [1920 h]; Drainlayer [960 h]; Plant Operator [720 h]; Backhoe [240 h] | CCD |  | 821 | 2130 | EXT | C110 |
| 821015260 |  | Connection work to existing fire services system | 30d | 2014-10-18 A | 2014-11-10 A | 821013340 | 100% | 2014-10-18 | 2014-11-21 |  | 3 - 821 VB & External (6 Work day &10d incl. weath. May-Oct) | Backhoe with Breaker [240 h]; Dump Truck [240 h]; Plant Operator [720 h]; Electrician [240 h]; Other Skill Labour (BS / E&M) [1920 h]; Backhoe [240 h] | CCD |  | 821 | 2130 | EXT | C110 |
| 821015200 |  | Connection work to existing storm drainage | 30d | 2014-11-03 A | 2015-01-28 A | 821015190 SS+12d | 100% | 2014-11-03 | 2014-12-06 |  | 3 - 821 VB & External (6 Work day &10d incl. weath. May-Oct) | Backhoe with Breaker [240 h]; Other Skill Labour (Civil) [1920 h]; Drainlayer [960 h]; Dump Truck [240 h]; Plant Operator [720 h]; Backhoe [240 h] | CCD |  | 821 | 2130 | EXT | C110 |
| 821013980 |  | Final Inspection & Handover | 56d | 2015-01-02 A | 2015-01-28 A | 8210PM075, 8210PM070 | 100% | 2015-01-02 | 2015-02-26 |  | 2 - 821 Calendar Day |  | CCD |  | 821 | 2130 |  | C100 |
|  | 3 | **Fencing and Railings** |  | 2014-05-05 | 2014-11-29 |  |  |  |  |  |  |  |  |  |  |  |  |  |
| 821015100 |  | Fences | 24d | 2014-05-05 A | 2014-11-29 A | 821015180, 821015580 | 100% | 2014-05-05 | 2014-06-04 |  | 3 - 821 VB & External (6 Work day &10d incl. weath. May-Oct) | Welder [768 h]; Plant Operator [192 h]; Metal worker [768 h]; Crane Lorry [192 h]; Welding Machine [192 h]; Painter [192 h] | CCD |  | 821 | 2130 | EXT | C110 |
| 821015110 |  | Gates and stiles | 24d | 2014-08-01 A | 2014-11-29 A | 821015580, 821015100 SS | 100% | 2014-08-01 | 2014-08-30 |  | 3 - 821 VB & External (6 Work day &10d incl. weath. May-Oct) | Metal worker [768 h]; Plant Operator [192 h]; Welder [768 h]; Crane Lorry [192 h]; Welding Machine [192 h]; Painter [192 h] | CCD |  | 821 | 2130 | EXT | C110 |
|  | 5 | **Landscaping** |  | 2014-07-02 | 2014-11-29 |  |  |  |  |  |  |  |  |  |  |  |  |  |
| 821015120 |  | Hard landscaping | 48d | 2014-07-02 A | 2014-11-29 A | 821015100, 821015110, 821014970 | 100% | 2014-07-02 | 2014-08-30 |  | 3 - 821 VB & External (6 Work day &10d incl. weath. May-Oct) | Plant Operator [384 h]; Concrete [192 m3]; Other Skill Labour (Civil) [3840 h]; Crane Lorry [384 h] | CCD |  | 821 | 2130 | EXT | C020 |
| 821015130 |  | Soft landscaping | 48d | 2014-07-02 A | 2014-11-29 A | 821015120 SS+24d, 821015830 | 100% | 2014-07-02 | 2014-08-30 |  | 3 - 821 VB & External (6 Work day &10d incl. weath. May-Oct) | Other Skill Labour (Civil) [3840 h]; Plant Operator [384 h]; Crane Lorry [384 h] | CCD |  | 821 | 2130 | EXT | C020 |

## Activity codes

| Code | Value | Meaning |
| --- | --- | --- |
| Areas/Rooms | COM | Common Area (includ. corridor, lobby, staircase...etc) |
| Areas/Rooms | DT | Track Area - Down Track |
| Areas/Rooms | PSR | Power Supply Electrical Room (includ. HV/LV Rm, Transformer Rm & Switch Rm) |
| Areas/Rooms | TECS | Tunnel ECS Control Room |
| Areas/Rooms | UT | Track Area - Up Track |
| Contracts | 820 | 820 - Mei Lai Road to Hoi Ting Road Tunnels |
| Contracts | 821 | 821 - Shek Yam to Mei Lai Road Tunnels |
| Cost Centre | 1 | Contract Requirement |
| Cost Centre | CCA | Cost Centre A - Preliminaries |
| Cost Centre | CCB | Cost Centre B - Shek Yam to Mei Lai Road Tunnels |
| Cost Centre | CCC | Cost Centre C - Adit Connection to Kwai Chung Ventilation Building |
| Cost Centre | CCD | Cost Centre D - Kwai Chung Ventilation Building VB6 |
| Location | 2110 | 821 Drill and Blast Tunnel |
| Location | 2120 | Kwai Chung Adit |
| Location | 2130 | VB6 - Kwai Chung Ventilation Building |
| Location | 3010 | Magazine site - So Kwun Wai |
| Location | 3110 | Barging Point - Nam Cheong |
| Phase of Works | C010 | Design and Approval |
| Phase of Works | C020 | Preparation / Enabling Works / Utility Diversions |
| Phase of Works | C030 | Procurement / Manufacture / Delivery |
| Phase of Works | C040 | TTMS Implementation |
| Phase of Works | C080 | Structural Works |
| Phase of Works | C090 | Tunnelling Works |
| Phase of Works | C100 | ABWF Works |
| Phase of Works | C110 | BS Installation and Testing |
| Phase of Works | S010 | Statutory Inspection |
| Sub-location | CP | Cross Passages |
| Sub-location | EXT | External Works |
| Sub-location | TUNN | Tunnels - Northbound |
| Sub-location | TUNS | Tunnels - Southbound |
| Sub-location | VBS1 | Ventilation Building - Substructure |
| Sub-location | VBS2 | Ventilation Building - Superstructure |
| Works Areas | 11.29C | Nam Cheong Barging Point |
| Works Areas | 9.1 | Kwai Chung Site Area |
| Works Areas | 9.2 | Kwai Chung Site Area |
| Works Areas | 9.2A | Kwai Chung Site Area |
| Works Areas | 9.4A | Kwai Chung Site Area |
| Works Areas | 9.4B | Kwai Chung Site Area |
