# SA2-Programme to Completion Update MAY 2016 (MonthlyReport July 2017)

Schedule from Primavera P6, 2010-02-01 to 2018-07-30, data date 2017-07-31, A marks actual dates.
30Sept2013 - Amendments made / 02Oct2013 - Amendments made / 13Nov2013 - DRP Rev 4 consider as / "CLOSED" as per received letter from MTRCL with reference number / 825-COR-PM(XRLT)-CCM-005179 / 12Feb2014 - DRP Rev 5, corrective, / accelaration programme and amendments in revert to MTR CL Letter with reference number 825--COR-PM(XRLT)-CCM-005202 / dated 30 Jan 2014 / 07May2014 - DRP Rev 5, corrective, / accelaration programme and amendments in revert to MTR CL Letter with reference number 825--COR-FIN-00617 & / 630 / 02July2014 - DRP Rev 5(Programme to / Completion), corrective, accelaration programme and amendments in revert to / MTR CL Letter and CSF with reference number / 825-COR-PM(XRLT)-CCM-005228 and 825--COR-FIN-00651 / respectively. / 02Feb2015 - SA (Programme to Completion), / corrective, accelaration programme and amendments in revert to MTR CL revised SA No.2 and CSF with reference number / 825--COR-FIN-00775 respectively.

## Calendars

- 825_6-day w/ holidays: Mon-Sat 07:00-17:00; Sun off. Exceptions (off unless hours are given): 2010-02-13, 2010-02-15 to 2010-02-16, 2010-04-02 to 2010-04-03, 2010-04-05 to 2010-04-06, 2010-05-01, 2010-05-21, 2010-06-16, 2010-07-01, 2010-09-23, 2010-10-01, 2010-10-16, 2010-12-25, 2010-12-27, 2011-01-01, 2011-02-03 to 2011-02-05, 2011-03-05, 2011-04-05, 2011-04-22 to 2011-04-23, 2011-04-25, 2011-05-02, 2011-05-10, 2011-06-06, 2011-07-01, 2011-09-13, 2011-10-01, 2011-10-05, 2011-12-26 to 2011-12-27, 2012-01-02, 2012-01-23 to 2012-01-25, 2012-04-04, 2012-04-06 to 2012-04-07, 2012-04-09, 2012-05-01, 2012-05-28, 2012-06-23, 2012-07-02, 2012-10-01 to 2012-10-02, 2012-10-23, 2012-12-25 to 2012-12-26, 2013-01-01, 2013-02-11 to 2013-02-13, 2013-03-29 to 2013-03-30, 2013-04-04, 2013-05-01, 2013-05-17, 2013-07-01, 2013-09-20, 2013-10-01, 2013-10-14, 2013-12-25 to 2013-12-26, 2014-01-01, 2014-02-01, 2014-02-03, 2014-04-05, 2014-04-18 to 2014-04-19, 2014-04-21, 2014-05-01, 2014-05-06, 2014-06-02, 2014-07-01, 2014-09-09, 2014-10-01 to 2014-10-02, 2014-12-25 to 2014-12-26, 2015-01-01, 2015-02-19 to 2015-02-21, 2015-04-03 to 2015-04-04, 2015-04-06 to 2015-04-07, 2015-05-01, 2015-05-25, 2015-06-20, 2015-07-01, 2015-09-28, 2015-10-01, 2015-10-21, 2015-12-25 to 2015-12-26, 2016-01-01, 2016-02-08 to 2016-02-10, 2016-03-25 to 2016-03-26, 2016-03-28, 2016-04-04, 2016-05-02, 2016-05-14, 2016-06-09, 2016-07-01, 2016-09-16, 2016-10-01, 2016-10-10, 2016-12-26 to 2016-12-27, 2017-01-02, 2017-01-28, 2017-01-30 to 2017-01-31, 2017-04-05, 2017-04-14 to 2017-04-15, 2017-04-17, 2017-05-01, 2017-05-03, 2017-05-30, 2017-07-01, 2017-10-02, 2017-10-05, 2017-10-28, 2017-12-25 to 2017-12-26.
- 825_7-day w/o holidays: Mon-Sun 07:00-17:00. Exceptions (off unless hours are given): 2010-07-05, 2010-12-24.
- 825_24 Hours w/o holidays: Mon-Sun 00:00-00:00.
- 6-workday with public holidays: Mon-Sat 06:30-17:30; Sun off. Exceptions (off unless hours are given): 2010-02-13, 2010-02-15 to 2010-02-16, 2010-04-02 to 2010-04-03, 2010-04-05 to 2010-04-06, 2010-05-01, 2010-05-17 07:30-15:30, 2010-05-21, 2010-06-16, 2010-07-01, 2010-09-23, 2010-10-01, 2010-10-16, 2010-12-25, 2010-12-27, 2011-01-01, 2011-02-03 to 2011-02-05, 2011-03-05, 2011-04-05, 2011-04-22 to 2011-04-23, 2011-04-25, 2011-05-02, 2011-05-10, 2011-06-06, 2011-07-01, 2011-09-13, 2011-10-01, 2011-10-05, 2011-12-26 to 2011-12-27, 2012-01-02, 2012-01-23 to 2012-01-25, 2012-04-04, 2012-04-06 to 2012-04-07, 2012-04-09, 2012-05-01, 2012-05-28, 2012-06-23, 2012-07-02, 2012-10-01 to 2012-10-02, 2012-10-23, 2012-12-25 to 2012-12-26, 2013-01-01, 2013-02-11 to 2013-02-13, 2013-03-29 to 2013-03-30, 2013-04-04, 2013-05-01, 2013-05-17, 2013-07-01, 2013-09-20, 2013-10-01, 2013-10-14, 2013-12-25 to 2013-12-26, 2014-01-01, 2014-02-01, 2014-02-03, 2014-04-05, 2014-04-18 to 2014-04-19, 2014-04-21, 2014-05-01, 2014-05-06, 2014-06-02, 2014-07-01, 2014-09-09, 2014-10-01 to 2014-10-02, 2014-12-25 to 2014-12-26, 2015-01-01, 2015-02-19 to 2015-02-21, 2015-04-03 to 2015-04-04, 2015-04-06 to 2015-04-07, 2015-05-01, 2015-05-25, 2015-06-20, 2015-07-01, 2015-09-28, 2015-10-01, 2015-10-21, 2015-12-25 to 2015-12-26.

## Resources

| Resource | Group | Unit |
| --- | --- | --- |
| General Steel Worker (crew of 4) | labor |  |
| 500T Lifting Crane | equipment |  |
| Crawler Crane | equipment |  |
| Concretors | labor |  |
| Steel & Rebar skilled worker (crew of 4) | labor |  |
| General Labor (Crew of 4) | labor |  |
| Lorry Crane | equipment |  |
| Drilling Rig | equipment |  |
| NB Stud Tunnel | material | m3 |
| NB Tunnel Walkways | material | m3 |
| Tunnel Carpenter (crew of 4) | labor |  |
| Tunnel Concrete Workers (Crew of 4) | labor |  |
| Tunnel Steel & Rebar Workers (crew of 4) | labor |  |
| General tunnel worker (Shift 1 - crew of 10) | labor |  |
| Concrete Pump | equipment |  |
| Grouting Machine | equipment |  |
| NB Tunnel Invert Slabs | material | m3 |
| General tunnel worker (Shift 2 - crew of 10) | labor |  |
| Lining Segment installation crew (Shift 1 - crew of 4) | labor |  |
| Lining Segment installation crew (Shift 2 - crew of 4) | labor |  |
| Scaffolders in Tunnel (crew of 6) | labor |  |
| TBM General Support crew (Shift 1 - crew of 10) | labor |  |
| TBM General Support crew (Shift 2 - crew of 10) | labor |  |
| TBM specialists crew (Shift 1 - crew of 5) | labor |  |
| TBM specialists crew (Shift 2 - crew of 5) | labor |  |
| Locomotive | equipment |  |
| Muck Car | equipment |  |
| Gantry Crane | equipment |  |
| Drilling Rig | equipment |  |
| Dump Truck | equipment |  |
| Welding Machine | equipment |  |
| Skilled Scaffolder (crew of 6) | labor |  |
| Concrete | material | m3 |
| Desander Unit | equipment |  |
| Hydrofraise | equipment |  |
| DW Rig with Clamshell | equipment |  |
| Generator | equipment |  |
| Diaphragm Wall Excavated Material | material | m3 |
| General Labor (crew of 4) | labor |  |
| Carpenter | labor |  |
| Electrician | labor |  |
| Pipes and Piping Skilled labors (crew of 2) | labor |  |
| Steel & Rebar skilled worker (crew of 4) | labor |  |
| Backfilling for South Elevation | material | m3 |
| Strut Skilled labors (Welders & Fitters) (crew of 4) | labor |  |
| External Works - Labor | labor |  |
| Retaining Wall & Toe Wall | material | m3 |
| External Works - Concreting | labor |  |
| External Works - Rebar | labor |  |
| External Works - Formworks | labor |  |
| External Works - Utilities Labor | labor |  |
| Road Base @ 210mm Thickness | material | Sq m |
| Road Pavement @ 105mm Thickness | material | Sq m |
| Backfilling | material | m3 |
| Surcharging | material | m3 |
| Soil Disposal | material | m3 |
| Struts installation skilled labor (crew of 5) | labor |  |
| Ground Treatment team (crew of 5) | labor |  |
| Drilling Team (crew of 4) | labor |  |
| Survey team (crew of 4) | labor |  |
| NB CP Labor | labor |  |
| NB CP Portal Concrete | material | m3 |
| NB CP Formworks | labor |  |
| NB CP Concreting | labor |  |
| NB CP Rebar | labor |  |
| NB CP Formworks Set | material | Nos |
| NB CP's Tunnel Lining | material | m3 |
| Bay 1 Entrance Seal, Late Cast Wall & Stitch Joint | material | m3 |
| Bay 1 Concrete | material | m3 |
| NB Bay 7 & Bay 8 - Invert Slab, Wall, Roof & Walkways | material | m3 |
| Segment Ring | material | Nos |
| Spoil - TBM Excavated Material | material | m3 |
| Boat | equipment |  |

## Schedule

| ID | WBS | Activity | Type | Duration | Start | Finish | Predecessors | Complete | Planned start | Planned finish | Total float | Free float | Constraint | Calendar | 825 Phase | 825 Location | Critical Path 4 | Critical Path 1 and 2 | Critical Path 3 | DRP Rev5 Filter | 825 Sub-location |
| --- | --- | --- | --- | --- | --- | --- | --- | --- | --- | --- | --- | --- | --- | --- | --- | --- | --- | --- | --- | --- | --- |
|  | 1 | **PROJECT DATES** |  |  | 2010-02-01 | 2018-06-30 |  |  |  |  |  |  |  |  |  |  |  |  |  |  |  |
|  | 1 | **KEY DATES/ COMPLETION OBLIGATIONS** |  |  | 2010-02-01 | 2017-07-31 |  |  |  |  |  |  |  |  |  |  |  |  |  |  |  |
| 8250KD00 |  | Contract Commencement Date | milestone | 0d | 2010-02-01 A | 2010-02-01 A |  | 100% |  |  |  |  | start on 2010-02-01 | 825_7-day w/o holidays | PDAT | 2525 |  |  |  |  |  |
| 8250KD3A |  | TBM Shaft for Contract 826 within Works Area 1.5 incl. Temp. Access Openings and Backfill | milestone | 0d | 2013-04-07 A | 2013-04-07 A | 8250ID08, 8250VB1520 | 100% | 2013-10-25 | 2013-10-25 |  |  |  | 825_7-day w/o holidays | PDAT | 2525 |  |  |  |  |  |
| 8250KD4B01 |  | MPV - Degree 1 Completion to All Rooms & Areas | milestone | 0d | 2014-01-31 A | 2014-01-31 A | 8250VB1704 FF, 8250VB1702 | 100% | 2013-10-12 | 2013-10-12 |  |  |  | 825_7-day w/o holidays | PDAT | 2525 |  |  |  |  |  |
| 8250KD2B |  | Complete All Works in Area 1.8 | milestone | 0d | 2014-07-31 A | 2014-07-31 A | 8250BS2615 | 100% | 2014-12-31 | 2014-12-31 |  |  |  | 825_7-day w/o holidays | PDAT | 2525 |  |  |  |  |  |
| 8250KD4B02 |  | MPV - Degree 2 Completion to All Rooms & Areas | milestone | 0d | 2014-12-31 A | 2014-12-31 A | 8250VB1724 | 100% |  |  |  |  |  | 825_7-day w/o holidays | PDAT | 2525 |  |  |  |  |  |
| 8250KD4B03 |  | MPV - Degree 3 Completion to All Rooms & Areas | milestone | 0d | 2015-01-31 A | 2015-01-31 A | 8250MSE10, 8250VB1760 | 100% | 2015-03-31 | 2015-03-31 |  |  | finish on or before 2015-01-31 | 825_7-day w/o holidays | PDAT | 2525 |  |  |  |  |  |
| 8250KD4A |  | Tunnels (Up & Down Tracks) - Degree 1 Completion from CH 117+450(NB) to Southern Limit | milestone | 0d | 2015-07-23 A | 2015-07-23 A | 8250CP1080 FF, 8250CP1030 FF, 8250CP1385 FF, 8250CC10105, 8250NB1184, 8250NB1240 FF, 8250NB1380 FF, 8250CC10170, 8250DA1995 FF, 8250GT1780 FF, 8250CP1490 FF, 8250CP1210 FF, 8250CC10210, 8250NB1182, 8250CC10040 FF, 8250CC10050 FF, 8250CC10070 FF, 8250NB1300 FF-6d, 8250GT1340 FF, 8250NB1280 FF, 8250GT1700 FF, 8250NB1360 FF-2d, 8250GT1240 FF, 8250CP1330 FF, 8250CP1270 FF, 8250CP1415 FF-2d, 8250CP1200 FF, 8250SB1624 FF, 8250CC10110, 8250NB1220 FF, 8250NB1340 FF, 8250CP1260 FF, 8250MSC06, 8250CC10020 FF, 8250CC10080 FF, 8250NB1320 FF, 8250BS1460, 8250KD3A_1 | 100% |  |  |  |  | finish on or before 2015-07-23 | 825_7-day w/o holidays | PDAT | 2525 |  |  |  |  |  |
| 8250KD2A |  | Complete All Works at Ground Level in Works Area 1.9 | milestone | 0d | 2015-08-31 A | 2015-08-31 A | 8250BS2555 | 100% | 2014-08-31 | 2014-08-31 |  |  | finish on 2015-08-31 | 825_7-day w/o holidays | PDAT | 2525 |  |  |  |  |  |
| 8250KD3B |  | Complete Stitch Joint at 826/825 Interface, Tunnel Invert & Walkways, Brackets from CH117+450(NB) to Northern Limit | milestone | 0d | 2016-04-30 A | 2016-04-30 A | 8250CC10421 | 100% | 2016-09-09 | 2016-09-09 |  |  | finish on or before 2016-06-12 | 825_7-day w/o holidays | PDAT | 2525 | CP4 |  |  |  |  |
| 8250KD4C |  | Remaining Tunnel Walls North of NB CH 117+450 (U/T & D/T) - Degree 1 Completion | milestone | 0d | 2016-09-23 A | 2016-09-23 A | 8250CC9464, 8250CC11535, 8250CC10430-200, 8250CC10440 | 100% | 2016-09-30 | 2016-09-30 |  |  | finish on or before 2016-09-25 | 825_7-day w/o holidays | PDAT | 2525 |  | CP | CP3 |  |  |
| 8250KD01 |  | Complete Whole of the Works (Week 30/2017) | milestone | 0d | 2017-07-31 | 2017-07-31 | 8250CC10050 FF, 8250NB1184 FF, 8250CC10070 FF, 8250NB1340 FF, 8250CC9464 FF, 8250CP1270 FF+12d, 8250CP1415 FF, 8250CP1490 FF, 8250SB1604 FF, 8250NB1360 FF, 8250GT1700 FF, 8250CC7430 FF, 8250CP1330 FF, 8250SB1624 FF, 8250CC10080 FF, 8250NB1380 FF, 8250GT1780 FF, 8250VB1760 FF, 8250CC10040 FF, 8250NB1200 FF, 8250EW3110, 8250EW20830, 8250CP1385 FF, 8250CP1210 FF, 8250NB1320 FF, 8250NB1300 FF, 8250NB1280 FF, 8250VB1780 FF, 8250CC7440 FF, 8250CC10480-100, 8250BS2410-100 FF, 8250SM3820, 8250CC20400, 8250HO090, 8250HO100, 8250HO120, 8250HO130, 8250HO140, 8250HO150, 8250HO160, 8250HO200, 8250BS2255-100 FF, 8250BS2280, 8250BS2260 |  |  |  | 0d |  | finish on 2017-07-30 | 825_7-day w/o holidays | PDAT | 2535 |  |  |  | H |  |
|  | 2 | **WORKS AREA ACCESS AND HANDOVER DATES** |  |  | 2010-02-01 | 2018-06-30 |  |  |  |  |  |  |  |  |  |  |  |  |  |  |  |
|  | 1 | **AREA 1.1** |  |  | 2010-10-12 | 2017-07-31 |  |  |  |  |  |  |  |  |  |  |  |  |  |  |  |
| 8250AC010 |  | Access to Works Area 1.1 | milestone | 0d | 2010-10-12 A | 2010-10-12 A | 8250KD00 | 100% | 2010-06-01 | 2010-06-01 |  |  | start on or after 2010-06-01 | 825_7-day w/o holidays | PDAT | 2530 |  |  |  |  |  |
| 8250HO010 |  | Handover of Works Area 1.1 | milestone | 0d | 2017-07-31 | 2017-07-31 | 8250EW4000 |  |  |  | -30d | 365d | finish on 2017-06-30 | 825_7-day w/o holidays | PDAT | 2530 |  |  |  |  | 1.1 |
|  | 2 | **AREA 1.2** |  |  | 2010-11-22 | 2018-06-30 |  |  |  |  |  |  |  |  |  |  |  |  |  |  |  |
| 8250AC020 |  | Access to Works Area 1.2 | milestone | 0d | 2010-11-22 A | 2010-11-22 A | 8250KD00 | 100% | 2010-12-01 | 2010-12-01 |  |  | start on or after 2010-12-01 | 825_7-day w/o holidays | PDAT | 2530 |  |  |  |  |  |
| 8250HO020 |  | Handover of Works Area 1.2 | milestone | 0d | 2018-06-30 | 2018-06-30 | 8250BS1250, 8250EW4000 |  |  |  | 0d | 30d | finish on 2018-06-30 | 825_7-day w/o holidays | PDAT | 2530 |  |  |  |  | 1.2 |
|  | 3 | **AREA 1.3** |  |  | 2010-02-01 | 2017-07-31 |  |  |  |  |  |  |  |  |  |  |  |  |  |  |  |
| 8250AC030 |  | Access to Works Area 1.3 - First Time | milestone | 0d | 2010-02-01 A | 2010-02-01 A | 8250KD00 | 100% | 2010-02-07 | 2010-02-07 |  |  | start on or after 2010-02-07 | 825_7-day w/o holidays | PDAT | 2530 |  |  |  |  |  |
| 8250HO030 |  | Handover of Area 1.3 | milestone | 0d | 2017-07-31 | 2017-07-31 | 8250BS2275, 8250BS1590 FF, 8250EW4000 |  |  |  | -30d | 365d | finish on 2017-06-30 | 825_7-day w/o holidays | PDAT | 2530 |  |  |  |  | 1.3 |
|  | 4 | **AREA 1.4A** |  |  | 2010-02-01 | 2017-07-31 |  |  |  |  |  |  |  |  |  |  |  |  |  |  |  |
| 8250AC040 |  | Access to Works Area 1.4A | milestone | 0d | 2010-02-01 A | 2010-02-01 A | 8250KD00 | 100% | 2010-02-07 | 2010-02-07 |  |  | start on or after 2010-02-07 | 825_7-day w/o holidays | PDAT | 2530 |  |  |  |  |  |
| 8250HO040 |  | Handover of Works Area 1.4A | milestone | 0d | 2017-07-31 | 2017-07-31 | 8250BS2225, 8250BS2228, 8250EW4000 |  |  |  | -30d | 365d | finish on 2017-06-30 | 825_7-day w/o holidays | PDAT | 2530 |  |  |  |  | 1.4A |

| ID | WBS | Activity | Type | Duration | Start | Finish | Predecessors | Complete | Planned start | Planned finish | Total float | Free float | Constraint | Calendar | 825 Phase | 825 Location | 825 Sub-location |
| --- | --- | --- | --- | --- | --- | --- | --- | --- | --- | --- | --- | --- | --- | --- | --- | --- | --- |
|  | 5 | **AREA 1.4B** |  |  | 2010-02-01 | 2017-07-31 |  |  |  |  |  |  |  |  |  |  |  |
| 8250AC041 |  | Access to Works Area 1.4B - First Time | milestone | 0d | 2010-02-01 A | 2010-02-01 A | 8250KD00 | 100% | 2010-02-07 | 2010-02-07 |  |  | start on or after 2010-02-07 | 825_7-day w/o holidays | PDAT | 2530 |  |
| 8250HO041 |  | Handover of Works Area 1.4B - First Time | milestone | 0d | 2010-09-12 A | 2010-09-12 A | 8250DC1140 FF, 8250DW1160 FF | 100% |  |  |  |  | finish on 2010-09-12 | 825_7-day w/o holidays | PDAT | 2530 |  |
| 8250AC042 |  | Access to Works Area 1.4B - Second Time | milestone | 0d | 2010-12-16 A | 2010-12-16 A | 8250SWMP0140 | 100% | 2011-01-10 | 2011-01-10 |  |  | start on or after 2011-01-10 | 825_7-day w/o holidays | PDAT | 2530 |  |
| 8250AC043 |  | Hand Over Area 1.4B | milestone | 0d | 2017-07-31 | 2017-07-31 | 8250BS2270, 8250BS2275, 8250AC042 |  |  |  | -30d | 365d | finish on 2017-06-30 | 825_7-day w/o holidays | PDAT | 2530 | 1.4B |
|  | 6 | **AREA 1.5** |  |  | 2010-02-01 | 2017-07-31 |  |  |  |  |  |  |  |  |  |  |  |
| 8250AC050 |  | Access to Works Area 1.5 - First Time | milestone | 0d | 2010-02-01 A | 2010-02-01 A | 8250KD00 | 100% | 2010-02-07 | 2010-02-07 |  |  | start on or after 2010-02-07 | 825_7-day w/o holidays | PDAT | 2530 |  |
| 8250AC051 |  | Hand Over Area 1.5 | milestone | 0d | 2017-07-31 | 2017-07-31 | 8250BS2295, 8250BS1800 |  |  |  | -30d | 365d | finish on 2017-06-30 | 825_7-day w/o holidays | PDAT | 2530 | 1.5 |
|  | 7 | **AREA 1.6** |  |  | 2010-02-01 | 2017-07-31 |  |  |  |  |  |  |  |  |  |  |  |
| 8250AC070 |  | Access to Works Area 1.6 | milestone | 0d | 2010-02-01 A | 2010-02-01 A | 8250KD00 | 100% | 2010-02-07 | 2010-02-07 |  |  | start on or after 2010-02-07 | 825_7-day w/o holidays | PDAT | 2530 |  |
| 8250HO070 |  | Handover of Works Area 1.6 | milestone | 0d | 2017-07-31 | 2017-07-31 | 8250BS1250 FF, 8250BS1590 FF, 8250BS2315 FF, 8250BS2320 FF, 8250BS2323 FF |  |  |  | -30d | 365d | finish on 2017-06-30 | 825_7-day w/o holidays | PDAT | 2530 | 1.6 |
|  | 8 | **AREA 1.7** |  |  | 2010-02-01 | 2017-06-30 |  |  |  |  |  |  |  |  |  |  |  |
| 8250AC080 |  | Access to Works Area 1.7 | milestone | 0d | 2010-02-01 A | 2010-02-01 A | 8250KD00 | 100% | 2010-02-07 | 2010-02-07 |  |  | start on or after 2010-02-07 | 825_7-day w/o holidays | PDAT | 2530 |  |
| 8250HO080 |  | Handover of Works Area 1.7 | milestone | 0d | 2017-06-30 A | 2017-06-30 A | 8250BS2520, 8250BS2510, 8250NBDIS0540, 8250BS2510-100, 8250EW4000 | 100% | 2017-08-02 | 2017-08-02 |  |  | finish on 2017-06-30 | 825_7-day w/o holidays | PDAT | 2530 | 1.7 |
|  | 9 | **AREA 1.8** |  |  | 2010-02-01 | 2014-07-31 |  |  |  |  |  |  |  |  |  |  |  |
| 8250AC090 |  | Access to Works Area 1.8 | milestone | 0d | 2010-02-01 A | 2010-02-01 A | 8250KD00 | 100% | 2010-02-07 | 2010-02-07 |  |  | start on or after 2010-02-07 | 825_7-day w/o holidays | PDAT | 2530 |  |
| 8250HO090 |  | Handover of Works Area 1.8 | milestone | 0d | 2014-07-31 A | 2014-07-31 A | 8250AC090 | 100% | 2014-12-31 | 2014-12-31 |  |  |  | 825_7-day w/o holidays | PDAT | 2530 | 1.8 |
|  | 10 | **AREA 1.9** |  |  | 2010-04-01 | 2015-08-31 |  |  |  |  |  |  |  |  |  |  |  |
| 8250AC100 |  | Access to Works Area 1.9 | milestone | 0d | 2010-04-01 A | 2010-04-01 A | 8250KD00 | 100% |  |  |  |  | start on or after 2010-04-01 | 825_7-day w/o holidays | PDAT | 2530 |  |
| 8250HO100 |  | Handover of Works Area 1.9 | milestone | 0d | 2015-08-31 A | 2015-08-31 A | 8250BS2555 | 100% | 2017-01-24 | 2017-01-24 |  |  | finish on 2015-08-31 | 825_7-day w/o holidays | PDAT | 2530 | 1.9 |
|  | 11 | **AREA 1.10** |  |  | 2017-05-02 | 2017-05-02 |  |  |  |  |  |  |  |  |  |  |  |
| 8250HO110 |  | Handover of Works Area 1.10 (Subject to SLG) | milestone | 0d | 2017-05-02 A | 2017-05-02 A | 825EW11070, 825EW10930, 8250EW2440, 8250PM045 | 100% | 2017-08-09 | 2017-08-09 |  |  |  | 825_7-day w/o holidays | PDAT | 2530 | 1.10 |
|  | 12 | **AREA 1.11** |  |  | 2010-08-02 | 2015-03-09 |  |  |  |  |  |  |  |  |  |  |  |
| 8250AC120 |  | Access to Works Area 1.11 | milestone | 0d | 2010-08-02 A | 2010-08-02 A | 8250KD00 | 100% |  |  |  |  | start on or after 2010-08-02 | 825_7-day w/o holidays | PDAT | 2530 |  |
| 8250HO120 |  | Handover of Works Area 1.11 | milestone | 0d | 2015-03-09 A | 2015-03-09 A | 8250AC120 | 100% | 2015-06-30 | 2015-06-30 |  |  | finish on 2015-03-09 | 825_7-day w/o holidays | PDAT | 2530 | 1.11 |

| ID | WBS | Activity | Type | Duration | Start | Finish | Predecessors | Complete | Planned start | Planned finish | Total float | Free float | Constraint | Calendar | 825 Phase | 825 Location | 825 Sub-location |
| --- | --- | --- | --- | --- | --- | --- | --- | --- | --- | --- | --- | --- | --- | --- | --- | --- | --- |
|  | 13 | **AREA 1.12** |  |  | 2010-08-02 | 2015-11-16 |  |  |  |  |  |  |  |  |  |  |  |
| 8250AC130 |  | Access to Works Area 1.12 | milestone | 0d | 2010-08-02 A | 2010-08-02 A | 8250KD00 | 100% |  |  |  |  | start on or after 2010-08-02 | 825_7-day w/o holidays | PDAT | 2530 |  |
| 8250HO130 |  | Handover of Works Area 1.12 | milestone | 0d | 2015-11-16 A | 2015-11-16 A | 8250GT1440 FF | 100% | 2016-06-30 | 2016-06-30 |  |  | finish on 2015-12-31 | 825_7-day w/o holidays | PDAT | 2530 | 1.12 |
|  | 14 | **AREA 1.13** |  |  | 2010-08-02 | 2015-12-30 |  |  |  |  |  |  |  |  |  |  |  |
| 8250AC140 |  | Access to Works Area 1.13 | milestone | 0d | 2010-08-02 A | 2010-08-02 A | 8250KD00 | 100% |  |  |  |  | start on or after 2010-08-02 | 825_7-day w/o holidays | PDAT | 2530 |  |
| 8250HO140 |  | Handover of Works Area 1.13 | milestone | 0d | 2015-12-30 A | 2015-12-30 A | 8250AC140 | 100% | 2016-06-30 | 2016-06-30 |  |  | finish on 2015-12-31 | 825_7-day w/o holidays | PDAT | 2530 | 1.13 |
|  | 15 | **AREA 1.14** |  |  | 2010-11-02 | 2015-12-30 |  |  |  |  |  |  |  |  |  |  |  |
| 8250AC150 |  | Access to Works Area 1.14 | milestone | 0d | 2010-11-02 A | 2010-11-02 A | 8250KD00 | 100% | 2010-12-01 | 2010-12-01 |  |  | start on or after 2010-12-01 | 825_7-day w/o holidays | PDAT | 2530 |  |
| 8250HO150 |  | Handover of Works Area 1.14 | milestone | 0d | 2015-12-30 A | 2015-12-30 A | 8250AC150 | 100% | 2016-06-30 | 2016-06-30 |  |  | finish on 2015-12-31 | 825_7-day w/o holidays | PDAT | 2530 | 1.14 |
|  | 16 | **AREA 1.15** |  |  | 2010-03-19 | 2015-12-01 |  |  |  |  |  |  |  |  |  |  |  |
| 8250AC160 |  | Access to Works Area 1.15 | milestone | 0d | 2010-03-19 A | 2010-03-19 A | 8250KD00 | 100% |  |  |  |  | start on or after 2010-03-19 | 825_7-day w/o holidays | PDAT | 2530 |  |
| 8250HO160 |  | Handover of Works Area 1.15 | milestone | 0d | 2015-12-01 A | 2015-12-01 A | 8250AC160 | 100% | 2016-06-30 | 2016-06-30 |  |  | finish on 2015-12-31 | 825_7-day w/o holidays | PDAT | 2530 | 1.15 |
|  | 22 | **AREA 1.15A** |  |  | 2015-12-01 | 2015-12-01 |  |  |  |  |  |  |  |  |  |  |  |
| 8250CC20400 |  | Handover of Works Area 1.15A | milestone | 0d | 2015-12-01 A | 2015-12-01 A | 8250CC11800 | 100% | 2016-06-30 | 2016-06-30 |  |  | finish on 2015-12-31 | 825_7-day w/o holidays |  |  |  |
|  | 17 | **AREA 1.16** |  |  | 2010-11-22 | 2017-07-31 |  |  |  |  |  |  |  |  |  |  |  |
| 8250AC170 |  | Access to Works Area 1.16 - First Time | milestone | 0d | 2010-11-22 A | 2010-11-22 A | 8250KD00 | 100% | 2010-12-01 | 2010-12-01 |  |  | start on or after 2010-12-01 | 825_7-day w/o holidays | PDAT | 2530 |  |
| 8250HO170 |  | Handover of Works Area 1.16 | milestone | 0d | 2017-07-31 | 2017-07-31 | 8250BS2255 |  |  |  | -30d | 365d | finish on 2017-06-30 | 825_7-day w/o holidays | PDAT | 2530 | 1.16 |
|  | 18 | **AREA 1.17** |  |  | 2010-02-01 | 2017-07-31 |  |  |  |  |  |  |  |  |  |  |  |
| 8250AC180 |  | Access to Works Area 1.17 - First Time | milestone | 0d | 2010-02-01 A | 2010-02-01 A | 8250KD00 | 100% | 2010-02-07 | 2010-02-07 |  |  | start on or after 2010-02-07 | 825_7-day w/o holidays | PDAT | 2530 |  |
| 8250HO180 |  | Handover of Works Area 1.17 | milestone | 0d | 2017-07-31 | 2017-07-31 | 8250BS2245, 8250BS2240 |  |  |  | -30d | 365d | finish on 2017-06-30 | 825_7-day w/o holidays | PDAT | 2530 | 1.17 |
|  | 21 | **AREA 1.19** |  |  | 2010-10-12 | 2010-11-28 |  |  |  |  |  |  |  |  |  |  |  |
| 8250AC200 |  | Access to Works Area 1.19 | milestone | 0d | 2010-10-12 A | 2010-10-12 A | 8250KD00 | 100% | 2010-06-01 | 2010-06-01 |  |  | start on or after 2010-06-01 | 825_7-day w/o holidays | PDAT | 2530 |  |
| 8250HO200 |  | Handover of Works Area 1.19 | milestone | 0d | 2010-11-28 A | 2010-11-28 A | 8250DC1280 FF | 100% |  |  |  |  | finish on 2010-11-28 | 825_7-day w/o holidays | PDAT | 2530 |  |
|  | 19 | **AREA 1.20** |  |  | 2010-06-01 | 2017-07-31 |  |  |  |  |  |  |  |  |  |  |  |
| 8250AC210 |  | Access to Works Area 1.20 | milestone | 0d | 2010-06-01 A | 2010-06-01 A | 8250KD00 | 100% |  |  |  |  | start on or after 2010-06-01 | 825_7-day w/o holidays | PDAT | 2530 |  |
| 8250HO210 |  | Handover of Works Area 1.20 | milestone | 0d | 2017-07-31 | 2017-07-31 | 8250EW2440, 8250AC210 |  |  |  | -211d | 365d | finish on 2016-12-31 | 825_7-day w/o holidays | PDAT | 2530 | 1.20 |

| ID | WBS | Activity | Type | Duration | Start | Finish | Predecessors | Complete | Planned start | Planned finish | Total float | Free float | Constraint | Calendar | 825 Phase | 825 Location | 825 Sub-location |
| --- | --- | --- | --- | --- | --- | --- | --- | --- | --- | --- | --- | --- | --- | --- | --- | --- | --- |
|  | 20 | **AREA 1.21** |  |  | 2010-06-01 | 2017-07-31 |  |  |  |  |  |  |  |  |  |  |  |
| 8250AC220 |  | Access to Works Area 1.21 | milestone | 0d | 2010-06-01 A | 2010-06-01 A | 8250KD00 | 100% |  |  |  |  | start on or after 2010-06-01 | 825_7-day w/o holidays | PDAT | 2530 |  |
| 8250HO220 |  | Handover of Works Area 1.21 | milestone | 0d | 2017-07-31 | 2017-07-31 | 8250BS2410-100, 8250EW4000, 8250AC220 |  |  |  | -30d | 365d | finish on 2017-06-30 | 825_7-day w/o holidays | PDAT | 2530 | 1.21 |
|  | 23 | **AREA/ ZONE A1** |  |  | 2015-04-15 | 2017-07-31 |  |  |  |  |  |  |  |  |  |  |  |
| 8250HO505 |  | Possession of Area/Zone A1 | milestone | 0d | 2015-04-15 A | 2015-04-15 A | 8250NBDIS0510 | 100% | 2015-06-30 | 2015-06-30 |  |  | start on 2015-04-15 | 825_7-day w/o holidays |  |  |  |
| 8250HO510 |  | Handover of Area/Zone A1 | milestone | 0d | 2017-07-31 | 2017-07-31 | 8250HO505, 8250EW4000 |  |  |  | -30d | 365d | finish on 2017-06-30 | 825_7-day w/o holidays |  |  |  |
|  | 24 | **AREA/ ZONE A2** |  |  | 2017-07-31 | 2017-07-31 |  |  |  |  |  |  |  |  |  |  |  |
| 8250HO515 |  | Possession of Area/Zone A2 | milestone | 0d | 2017-07-31 | 2017-07-31 | 8250SWTDn0220 |  |  |  | -30d | 0d | start on or after 2016-03-07 | 825_7-day w/o holidays |  |  |  |
| 8250HO520 |  | Handover of Area/Zone A2 | milestone | 0d | 2017-07-31 | 2017-07-31 | 8250CC10500-100, 8250EW4000 |  |  |  | -30d | 365d | finish on 2017-06-30 | 825_7-day w/o holidays |  |  |  |
|  | 25 | **AREA/ ZONE C** |  |  | 2016-08-26 | 2017-07-31 |  |  |  |  |  |  |  |  |  |  |  |
| 8250HO525 |  | Possession of Area/Zone C | milestone | 0d | 2016-08-26 A | 2016-08-26 A | 8250CC10425-100 | 100% | 2016-08-31 | 2016-08-31 |  |  | start on 2016-08-15 | 825_7-day w/o holidays |  |  |  |
| 8250HO530 |  | Handover of Area/Zone C | milestone | 0d | 2017-07-31 | 2017-07-31 | 8250EW4000 |  |  |  | -30d | 365d | finish on 2017-06-30 | 825_7-day w/o holidays |  |  |  |
|  | 26 | **AREA/ ZONE D** |  |  | 2016-08-26 | 2017-07-31 |  |  |  |  |  |  |  |  |  |  |  |
| 8250HO535 |  | Possession of Area/Zone D | milestone | 0d | 2016-08-26 A | 2016-08-26 A | 8250SWTDn0220, 8250CC10425-100 | 100% | 2016-08-31 | 2016-08-31 |  |  | start on 2016-04-11 | 825_7-day w/o holidays |  |  |  |
| 8250HO540 |  | Handover of Area/Zone D | milestone | 0d | 2017-07-31 | 2017-07-31 | 8250EW4000 |  |  |  | -30d | 365d | finish on 2017-06-30 | 825_7-day w/o holidays |  |  |  |
|  | 27 | **AREA/ ZONE E** |  |  | 2017-07-31 | 2017-07-31 |  |  |  |  |  |  |  |  |  |  |  |
| 8250HO545 |  | Possession of Area/Zone E - 1st Possession | milestone | 0d | 2017-07-31 | 2017-07-31 | 8250SWTDn0220 |  |  |  | -511d | 365d | start on 2016-03-07 | 825_7-day w/o holidays |  |  |  |
| 8250HO550 |  | Handover of Area/Zone E - 1st Handover | milestone | 0d | 2017-07-31 | 2017-07-31 | 8250CC11390 |  |  |  | -413d | 0d | finish on 2016-06-12 | 825_7-day w/o holidays |  |  |  |
| 8250HO555 |  | Possession of Area/Zone E - 2nd Possession | milestone | 0d | 2017-07-31 | 2017-07-31 | 8250HO550 |  |  |  | -30d | 0d |  | 825_7-day w/o holidays |  |  |  |
| 8250HO560 |  | Handover of Area/Zone E - 2nd Handover | milestone | 0d | 2017-07-31 | 2017-07-31 | 8250EW4000 |  |  |  | -30d | 365d | finish on 2017-06-30 | 825_7-day w/o holidays |  |  |  |
|  | 28 | **AREA/ ZONE F** |  |  | 2017-07-31 | 2017-07-31 |  |  |  |  |  |  |  |  |  |  |  |
| 8250HO565 |  | Possession of Area/Zone F | milestone | 0d | 2017-07-31 | 2017-07-31 | 8250SWTDn0220 |  |  |  | -511d | 365d | start on 2016-03-07 | 825_7-day w/o holidays |  |  |  |
| 8250HO570 |  | Handover of Area/Zone F | milestone | 0d | 2017-07-31 | 2017-07-31 | 8250EW4000 |  |  |  | -30d | 365d | finish on 2017-06-30 | 825_7-day w/o holidays |  |  |  |
|  | 29 | **AREA/ ZONE G** |  |  | 2017-07-31 | 2017-07-31 |  |  |  |  |  |  |  |  |  |  |  |
| 8250HO580 |  | Handover of Area/Zone G | milestone | 0d | 2017-07-31 | 2017-07-31 | 8250EW4000 |  |  |  | -30d | 365d | finish on 2017-06-30 | 825_7-day w/o holidays |  |  |  |

| ID | WBS | Activity | Type | Duration | Start | Finish | Predecessors | Complete | Planned start | Planned finish | Total float | Free float | Constraint | Calendar | DRP Rev5 Filter | 825 Phase | 825 Location | Critical Path 3 | Critical Path 1 and 2 |
| --- | --- | --- | --- | --- | --- | --- | --- | --- | --- | --- | --- | --- | --- | --- | --- | --- | --- | --- | --- |
|  | 30 | **AREA/ ZONE H** |  |  | 2017-07-31 | 2017-07-31 |  |  |  |  |  |  |  |  |  |  |  |  |  |
| 8250HO590 |  | Handover of Area/Zone H | milestone | 0d | 2017-07-31 | 2017-07-31 | 8250EW4000 |  |  |  | 0d | 364d | finish on 2017-07-31 | 825_7-day w/o holidays |  |  |  |  |  |
|  | 3 | **MTR PROJECT MILESTONE DATES** |  |  | 2016-03-18 | 2017-07-31 |  |  |  |  |  |  |  |  |  |  |  |  |  |
|  | 1 | **SCHEDULE OF POWER ON DATES** |  |  | 2017-07-31 | 2017-07-31 |  |  |  |  |  |  |  |  |  |  |  |  |  |
| 8250PM010 |  | CLP Transformer Room at VB (Week 41/2016,17-Oct-16) fed via tunnel from SHK | milestone | 0d | 2017-07-31 | 2017-07-31 | 8250KD4B03 |  |  |  | -287d | 0d | start on 2016-10-17 | 825_7-day w/o holidays | H | PDAT | 2535 |  |  |
| 8250PM015 |  | CLP Transformer Room at VB (Week 05/2017,6-Feb-17) external cable via MPV permanent road | milestone | 0d | 2017-07-31 | 2017-07-31 | 8250CC20495, 8250PM010, 8250CC20490 |  |  |  | -175d | 0d | start on 2017-02-06 | 825_7-day w/o holidays | H | PDAT | 2535 |  |  |
| 8250PM020 |  | Permanent LV Power On (Week 41/2016,17-Oct-16) fed via tunnel from SHK | milestone | 0d | 2017-07-31 | 2017-07-31 | 8250KD4B03 |  |  |  | -287d | 0d | start on 2016-10-17 | 825_7-day w/o holidays | H | PDAT | 2535 |  |  |
| 8250PM025 |  | Permanent LV Power On (Week 05/2017,6-Feb-17)) external cable via MPV permanent road | milestone | 0d | 2017-07-31 | 2017-07-31 | 8250CC20495, 8250CC20490, 8250PM020 |  |  |  | -175d | 0d | start on 2017-02-06 | 825_7-day w/o holidays | H | PDAT | 2535 |  |  |
| 8250PM030 |  | Overhead Lines Power On by DC830 (Week 13/2017,3-Apr-17) | milestone | 0d | 2017-07-31 | 2017-07-31 | 8250PM015, 8250PM025 |  |  |  | -119d | 365d | start on 2017-04-03 | 825_7-day w/o holidays |  |  |  |  |  |
|  | 2 | **WORKS REQUIRED FOR STATUTORY INPSECTION** |  |  | 2017-05-14 | 2017-07-31 |  |  |  |  |  |  |  |  |  |  |  |  |  |
| 8250PM045 |  | Complete All External Works, EVA & Associated Works (wk19/17,14-May-17) | milestone | 0d | 2017-05-14 A | 2017-05-14 A | 8250EW6140, 825EW10930, 825EW10365, 825EW10790, 8250EW4000, 8250CC10500-100, 8250BS2310, 825EW11240, 8250CC20510, 8250BS2245, 8250BS2315, 825EW10240, 825EW10500, 8250CC11490, 8250EW20830, 8250BS2225, 8250BS2240, 8250EW0118, 8250EW0120, 8250LW1040, 8250BS2410-100, 825EW10650, 8250CC20390, 825EW12580, 8250CC20515, 8250EW3110, 8250CC11510, 825EW11070, 8250EW2440, 8250BS2323, 8250BS2115, 8250PM035, 8250PM040, 8250BS2255-100, 8250BS2280, 8250BS2260, 8250LW1020 | 100% | 2017-08-09 | 2017-08-09 |  |  | finish on or before 2017-05-14 | 825_7-day w/o holidays |  |  |  | CP3 |  |
| 8250PM035 |  | Complete All External Water Works within the Site & Connect to Government Water Mains (wk52/16,1-Jan-17) | milestone | 0d | 2017-07-31 | 2017-07-31 | 825EW12920, 825EW11010, 825EW10180, 825EW10730, 825EW10870, 825EW12520, 8250EW2380, 825EW11180, 825EW12900, 825EW10590, 825EW12800, 8250EW6140, 825EW10440 |  |  |  | -210d | 0d | finish on or before 2017-01-01 | 825_7-day w/o holidays | H | PDAT | 2535 |  | CP2 |
| 8250PM040 |  | Complete all External Telephone Drawpits & Ducts within the Site (wk52/16,1-Jan-17) | milestone | 0d | 2017-07-31 | 2017-07-31 | 825EW12910, 825EW11190, 825EW10450, 8250CC20500, 825EW10190, 8250CC20505, 825EW10600, 825EW11020, 825EW12530, 825EW10740, 825EW12810, 8250EW6140, 825EW10880, 8250EW2390 |  |  |  | -210d | 0d | finish on or before 2017-01-01 | 825_7-day w/o holidays | H | PDAT | 2535 |  | CP2 |
|  | 3 | **TEMPORARY ACCESS OPENINGS/AREAS FOR DESIGNATED CONTRACTORS** |  |  | 2016-03-18 | 2017-07-31 |  |  |  |  |  |  |  |  |  |  |  |  |  |
| 8250PM050 |  | Access Opening (7mx5m) at D/T Cut and Cover Tunnel -Usage Finish by DC (wk01/16, 10-Jan-16)) | milestone | 0d | 2016-03-18 A | 2016-03-18 A | 8250CC11528 | 100% | 2016-06-30 | 2016-06-30 |  |  |  | 825_7-day w/o holidays | H | PDAT | 2535 |  |  |
| 8250PM055 |  | Access Opening (7m x 5m) at U/T Cut and Cover Tunnel - Usage Finish by DC (wk09/16, 6-Mar-16) | milestone | 0d | 2017-07-31 | 2017-07-31 | 8250CC11529 |  |  |  | -382d | 0d |  | 825_7-day w/o holidays | H | PDAT | 2535 |  |  |
| 8250PM057 |  | Approx. 60m length of U/T Cut and Cover Tunnel Bay 2-6 Walkway - Usage Finish by DC (wk09/16, 6-Mar-16) | milestone | 0d | 2017-07-31 | 2017-07-31 | 8250CC11530 |  |  |  | -382d | 0d |  | 825_7-day w/o holidays | H | PDAT | 2535 |  |  |
|  | 4 | **SCHEDULE OF CLOSING TEMPORART TUNNEL ACCESS OPENINGS FOR DESIGNARED CONTRACTORS** |  |  | 2016-03-18 | 2017-07-31 |  |  |  |  |  |  |  |  |  |  |  |  |  |
| 8250PM060 |  | Access Opening (7mx5m) at D/T Cut and Cover Tunnel (wk03/16, 24-Jan-16) | milestone | 0d | 2016-03-18 A | 2016-03-18 A | 8250CC10200 | 100% | 2016-06-30 | 2016-06-30 |  |  | finish on or before 2016-01-24 | 825_7-day w/o holidays | H | PDAT | 2535 |  |  |
| 8250PM065 |  | Access Opening (7m x 5m) at U/T Cut and Cover Tunnel (wk11/16, 20-Mar-16) | milestone | 0d | 2017-07-31 | 2017-07-31 | 8250CC10205 |  |  |  | -382d | 0d | finish on or before 2016-07-13 | 825_7-day w/o holidays | H | PDAT | 2535 |  |  |
|  | 4 | **DESIGNATED CONTRACTORS ACCESS DATES** |  |  | 2014-02-09 | 2017-07-31 |  |  |  |  |  |  |  |  |  |  |  |  |  |
| 8250CC10604 |  | 830 - Trackwork & Overhead Line System, Access to MPV - TSC | milestone | 0d | 2014-02-09 A | 2014-02-09 A | 8250VB1724 | 100% | 2014-12-31 | 2014-12-31 |  |  | start on or after 2014-02-09 | 825_7-day w/o holidays |  | PDAT | 2540 |  |  |
| 8250CC10830 |  | 854 - Security Access Management System, Access to MPV - Doors with SAMS | milestone | 0d | 2014-03-21 A | 2014-03-21 A | 8250VB1760 | 100% | 2015-02-01 | 2015-02-01 |  |  |  | 825_7-day w/o holidays |  | PDAT | 2540 |  |  |
| 8250CC10755 |  | 850 - Passenger Mobile Communications System, Access to MPV - TER | milestone | 0d | 2014-04-16 A | 2014-04-16 A | 8250VB1724 | 100% | 2014-12-31 | 2014-12-31 |  |  | start on or after 2014-04-13 | 825_7-day w/o holidays |  | PDAT | 2540 |  |  |
| 8250CC10725 |  | 846 - Trackside Auxiliaries, Access to MPV - Trackside LV Switch Room & Boost Up Transformer Room | milestone | 0d | 2014-04-28 A | 2014-04-28 A | 8250VB1724 | 100% | 2014-12-31 | 2014-12-31 |  |  | start on or after 2014-02-09 | 825_7-day w/o holidays |  | PDAT | 2540 |  |  |
| 8250CC10726 |  | 847 - Lifts, Access to MPV - Lift shafts & Lift Machine Room | milestone | 0d | 2014-04-28 A | 2014-04-28 A | 8250VB1724 | 100% | 2014-12-31 | 2014-12-31 |  |  | start on or after 2014-02-09 | 825_7-day w/o holidays |  | PDAT | 2540 |  |  |
| 8250CC10840 |  | 855 - BS for Tunnel Ventilation Building, Access to MPV - All Rooms & Common Areas | milestone | 0d | 2014-04-28 A | 2014-04-28 A | 8250VB1704, 8250VB1680 | 100% | 2013-10-13 | 2013-10-13 |  |  | start on or before 2013-10-13 | 825_7-day w/o holidays |  | PDAT | 2540 |  |  |
| 8250CC10695 |  | 845 - Power Supply System, Access to MPV - all LV & HV Electrical Rooms, Switch Rooms & Trx Rooms | milestone | 0d | 2014-06-04 A | 2014-06-04 A | 8250VB1722 | 100% | 2015-05-08 | 2015-05-08 |  |  |  | 825_7-day w/o holidays |  | PDAT | 2540 |  |  |
| 8250CC10591 |  | 827 - Cross Passage Door Installation D/T | milestone | 0d | 2014-07-24 A | 2014-07-24 A | 8250GT1780 FS+12d, 8250CP1490, 8250CC10040 FS+5d, 8250CC10050 FS+14.58d, 8250NB1360 FS+10d, 8250GT1240, 8250CC10080, 8250NB1340 FS+9d, 8250DA1995, 8250CC10070 FS+4.17d, 8250CP1330 FS+35d, 8250CP1385 FS+9d, 8250CP1270 FS+12d, 8250CP1210 FS+47d, 8250CC10020, 8250NB1280 FS+47d, 8250NB1380, 8250CP1415 FS+10d, 8250NB1220, 8250NB1300 FS+6d, 8250CP1030, 8250NB1320 FS+35d, 8250GT1700 FS+47d | 100% | 2014-12-31 | 2014-12-31 |  |  | start on or after 2013-12-08 | 825_7-day w/o holidays |  | PDAT | 2540 |  |  |
| 8250CC10592 |  | 827 - Cross Passage Door Installation U/T | milestone | 0d | 2014-09-01 A | 2014-09-01 A | 8250NB1340 FS-1d, 8250GT1780 FS+12d, 8250CP1330 FS+25d, 8250NB1380, 8250NB1280 FS+37d, 8250CC10070, 8250CC10080, 8250CP1270 FS+12d, 8250CP1490, 8250NB1320 FS+25d, 8250GT1700 FS+37d, 8250CP1385 FS-1d, 8250CP1415, 8250CC10040 FS+15.42d, 8250CP1210 FS+37d, 8250CC10050 FS+10.42d, 8250NB1300 FS+6d, 8250NB1360 | 100% | 2014-12-31 | 2014-12-31 |  |  | start on or after 2014-09-14 | 825_7-day w/o holidays |  | PDAT | 2540 |  |  |
| 8250CC10665 |  | 843 - Tunnel Environmental Control System, Access to MPV - TVF, Compressed & Receiver Air Rm & Tunnel ECS Control Rm | milestone | 0d | 2014-09-18 A | 2014-09-18 A | 8250VB1722 | 100% | 2014-12-31 | 2014-12-31 |  |  | start on or after 2014-02-09 | 825_7-day w/o holidays |  | PDAT | 2540 |  |  |
| 8250CC10729 |  | 849 - Radio Communications System, Access to MPV - TER, SER, Corridors and Roof | milestone | 0d | 2014-09-18 A | 2014-09-18 A | 8250VB1724 | 100% | 2014-12-31 | 2014-12-31 |  |  | start on or after 2014-04-13 | 825_7-day w/o holidays |  | PDAT | 2540 |  |  |
| 8250CC10785 |  | 851 - Fixed Communication System, Access to MPV - TER | milestone | 0d | 2014-09-18 A | 2014-09-18 A | 8250VB1724 | 100% | 2014-12-31 | 2014-12-31 |  |  | start on or after 2014-04-13 | 825_7-day w/o holidays |  | PDAT | 2540 |  |  |
| 8250CC10820 |  | 853 - Main Control System, Access to MPV - TER | milestone | 0d | 2014-09-18 A | 2014-09-18 A | 8250VB1724 | 100% | 2014-12-31 | 2014-12-31 |  |  | start on or after 2014-04-13 | 825_7-day w/o holidays |  | PDAT | 2540 |  |  |
| 8250CC10600 |  | 830 - Track Work and Overhead Line CH117+450 to South D/T | milestone | 0d | 2014-10-16 A | 2014-10-16 A | 8250CC20350, 8250CC20480, 8250CC20140, 8250CC20190, 8250NB2020, 8250CC11710, 8250CC20420, 8250CC20130, 8250CC20160, 8250NB2010, 8250NB2070, 8250CC20430, 8250CC20150, 8250CC20170, 8250CC10980, 8250CC20410, 8250CC20440, 8250CC20470, 8250NB2040, 8250CC11800, 8250CC11870, 8250CC11690, 8250CC10105, 8250CC20460, 8250CC20180, 8250NB1182, 8250NB2030, 8250NB2050, 8250CC11660, 8250CC11740, 8250CC11880, 8250CC10110, 8250NB2060, 8250NB2090, 8250CC11830, 8250CC20100, 8250CC20450, 8250CC20110, 8250CC20120, 8250NB1184, 8250NB2080, 8250NB2100, 8250ID15 | 100% | 2015-10-31 | 2015-10-31 |  |  | start on or after 2015-06-22 | 825_7-day w/o holidays |  |  |  |  |  |
| 8250CC10669 |  | 844 - Power Supply by CLP, Access to MPV - All LV & HV Electrical Rooms, Switch Rooms & Trx Rooms | milestone | 0d | 2015-07-03 A | 2015-07-03 A | 8250VB1722, 8250VB1820 | 100% | 2014-02-22 | 2014-02-22 |  |  | start on or after 2015-07-03 | 825_7-day w/o holidays |  | PDAT | 2540 |  |  |
| 8250CC10580 |  | 827 - Cross Passage Door Frame Installation D/T | milestone | 0d | 2015-07-24 A | 2015-07-24 A | 8250CC10970 | 100% | 2015-10-31 | 2015-10-31 |  |  |  | 825_7-day w/o holidays |  |  |  |  |  |
| 8250CC10590 |  | 827 - Cross Passage Door Frame Installation U/T | milestone | 0d | 2015-09-01 A | 2015-09-01 A | 8250CC10970, 8250CC11810, 8250CC11640, 8250CC11850, 8250CC11780, 8250CC11720, 8250CC11670, 8250CC11370, 8250CC11110 | 100% | 2015-10-31 | 2015-10-31 |  |  | start on or after 2015-06-22 | 825_7-day w/o holidays |  |  |  |  |  |
| 8250CC10601 |  | 830 - Track Work and Overhead Line CH117+450 to South U/T | milestone | 0d | 2015-09-01 A | 2015-09-01 A | 8250CC20110 | 100% | 2015-10-31 | 2015-10-31 |  |  | start on 2015-06-19 | 825_7-day w/o holidays |  | PDAT | 2540 |  |  |
| 8250CC10603 |  | 830 - Track Work and Overhead Line CH117+450 to North U/T & D/T (wk23/16) | milestone | 0d | 2016-05-01 A | 2016-05-01 A | 8250KD3B | 100% | 2016-06-30 | 2016-06-30 |  |  | start on 2016-06-13 | 825_7-day w/o holidays |  | PDAT | 2540 |  |  |
| 8250CC10610 |  | 841A - Signalling System - Trackside Equipment,CH 117+450 to South U/T (wk35/16) | milestone | 0d | 2017-07-31 | 2017-07-31 | 8250CC10603 |  |  |  | -329d | 365d | start on 2016-09-05 | 825_7-day w/o holidays |  |  |  |  |  |
| 8250CC10620 |  | 841A - Signalling System - Trackside Equipment,CH 117+450 to South D/T (wk32/16) | milestone | 0d | 2017-07-31 | 2017-07-31 | 8250CC10603 |  |  |  | -350d | 365d | start on 2016-08-15 | 825_7-day w/o holidays |  |  |  |  |  |
| 8250CC10630 |  | 841A - Signalling System - Trackside Equipment,CH 117+450 to North U/T & D/T (wk38/16) | milestone | 0d | 2017-07-31 | 2017-07-31 | 8250KD4C |  |  |  | -308d | 365d | start on 2016-09-26 | 825_7-day w/o holidays |  |  |  |  |  |
| 8250CC10640 |  | 841B - Signalling System - Train Borne Equipment, CH 117+450 to South U/T (wk35/16) | milestone | 0d | 2017-07-31 | 2017-07-31 | 8250CC10603 |  |  |  | -329d | 365d | start on 2016-09-05 | 825_7-day w/o holidays |  |  |  |  |  |
| 8250CC10650 |  | 841B - Signalling System - Train Borne Equipment, CH 117+450 to South D/T (wk32/16) | milestone | 0d | 2017-07-31 | 2017-07-31 | 8250CC10603 |  |  |  | -350d | 365d | start on 2016-08-15 | 825_7-day w/o holidays |  |  |  |  |  |
| 8250CC10660 |  | 841B - Signalling System - Train Borne Equipment, CH 117+450 to North U/T & D/T (wk38/16) | milestone | 0d | 2017-07-31 | 2017-07-31 | 8250KD4C |  |  |  | -308d | 365d | start on 2016-09-26 | 825_7-day w/o holidays |  |  |  |  |  |
| 8250CC10670 |  | 844 - Power Supply by CLP, Access to Tunnels CH117+450 to South U/T (wk35/16) | milestone | 0d | 2017-07-31 | 2017-07-31 | 8250CC10603 |  |  |  | -329d | 365d | start on 2016-09-05 | 825_7-day w/o holidays |  |  |  |  |  |
| 8250CC10680 |  | 844 - Power Supply by CLP, Access to Tunnels CH117+450 to South D/T (wk32/16) | milestone | 0d | 2017-07-31 | 2017-07-31 | 8250CC10603 |  |  |  | -350d | 365d | start on 2016-08-15 | 825_7-day w/o holidays |  |  |  |  |  |
| 8250CC10690 |  | 844 - Power Supply by CLP, Access to Tunnels CH117+450 to North U/T & D/T (wk38/16) | milestone | 0d | 2017-07-31 | 2017-07-31 | 8250KD4C |  |  |  | -308d | 365d | start on 2016-09-26 | 825_7-day w/o holidays |  |  |  |  |  |
| 8250CC10700 |  | 846 - Trackside Auxiliaries, Access to Tunnels CH 117+450 to South U/T (wk35/16) | milestone | 0d | 2017-07-31 | 2017-07-31 | 8250CC10603 |  |  |  | -329d | 365d | start on 2016-09-05 | 825_7-day w/o holidays |  |  |  |  |  |
| 8250CC10710 |  | 846 - Trackside Auxiliaries, Access to Tunnels CH 117+450 to South D/T (wk32/16) | milestone | 0d | 2017-07-31 | 2017-07-31 | 8250CC10603 |  |  |  | -350d | 365d | start on 2016-08-15 | 825_7-day w/o holidays |  |  |  |  |  |
| 8250CC10720 |  | 846 - Trackside Auxiliaries, Access to Tunnels CH 117+450 to North U/T & D/T (wk38/16) | milestone | 0d | 2017-07-31 | 2017-07-31 | 8250KD4C |  |  |  | -308d | 365d | start on 2016-09-26 | 825_7-day w/o holidays |  |  |  |  |  |
| 8250CC10730 |  | 849 - Radio Communications System, Access to Tunnels CH 117+450 to South U/T (wk35/16) | milestone | 0d | 2017-07-31 | 2017-07-31 | 8250CC10603 |  |  |  | -329d | 365d | start on 2016-09-05 | 825_7-day w/o holidays |  |  |  |  |  |
| 8250CC10740 |  | 849 - Radio Communications System, Access to Tunnels CH 117+450 to South D/T (wk32/16) | milestone | 0d | 2017-07-31 | 2017-07-31 | 8250CC10603 |  |  |  | -350d | 365d | start on 2016-08-15 | 825_7-day w/o holidays |  |  |  |  |  |
| 8250CC10750 |  | 849 - Radio Communications System, Access to Tunnels CH 117+450 to North U/T & D/T (wk38/16) | milestone | 0d | 2017-07-31 | 2017-07-31 | 8250KD4C |  |  |  | -308d | 365d | start on 2016-09-26 | 825_7-day w/o holidays |  |  |  |  |  |
| 8250CC10760 |  | 850 - Passenger Mobile Communications System, Access to Tunnels CH 117+450 to South U/T (wk35/16) | milestone | 0d | 2017-07-31 | 2017-07-31 | 8250CC10603 |  |  |  | -329d | 365d | start on 2016-09-05 | 825_7-day w/o holidays |  |  |  |  |  |
| 8250CC10770 |  | 850 - Passenger Mobile Communications System, Access to Tunnels CH 117+450 to South D/T (wk32/16) | milestone | 0d | 2017-07-31 | 2017-07-31 | 8250CC10603 |  |  |  | -350d | 365d | start on 2016-08-15 | 825_7-day w/o holidays |  |  |  |  |  |
| 8250CC10780 |  | 850 - Passenger Mobile Communications System, Access to Tunnels CH 117+450 to North U/T & D/T (wk38/16) | milestone | 0d | 2017-07-31 | 2017-07-31 | 8250KD4C |  |  |  | -308d | 365d | start on 2016-09-26 | 825_7-day w/o holidays |  |  |  |  |  |
| 8250CC10790 |  | 851 - Fixed Communication System, Access to Tunnels CH 117+450 to South U/T (wk35/16) | milestone | 0d | 2017-07-31 | 2017-07-31 | 8250CC10603 |  |  |  | -329d | 365d | start on 2016-09-05 | 825_7-day w/o holidays |  |  |  |  |  |
| 8250CC10800 |  | 851 - Fixed Communication System, Access to Tunnels CH 117+450 to South D/T (wk32/16) | milestone | 0d | 2017-07-31 | 2017-07-31 | 8250CC10603 |  |  |  | -350d | 365d | start on 2016-08-15 | 825_7-day w/o holidays |  |  |  |  |  |
| 8250CC10810 |  | 851 - Fixed Communication System, Access to Tunnels CH 117+450 to North U/T & D/T (wk38/16) | milestone | 0d | 2017-07-31 | 2017-07-31 | 8250KD4C |  |  |  | -308d | 365d | start on 2016-09-26 | 825_7-day w/o holidays |  |  |  |  |  |

Notes:
- 8250CC10601: Corrective Actions: 02Oct2013 - rename from / "830 - Hand Over Lower Part of Interface to 830"
- 8250CC10603: Corrective Actions: 02Oct2013 - rename from / "830 - Hand Over Lower Part of Interface to 830"

| ID | WBS | Activity | Type | Duration | Start | Finish | Predecessors | Complete | Planned start | Planned finish | Calendar | 825 Phase | 825 Location |
| --- | --- | --- | --- | --- | --- | --- | --- | --- | --- | --- | --- | --- | --- |
|  | 8 | **OPENINGS CLOSURE & INTERFACE WITH OTHERS** |  |  |  |  |  |  |  |  |  |  |  |
|  | 5 | **PAYMENT MILESTONE DATES** |  |  | 2010-03-14 | 2017-07-31 |  |  |  |  |  |  |  |
|  | 1 | **COST CENTRE A** |  |  | 2010-05-09 | 2017-06-15 |  |  |  |  |  |  |  |
| 8250MSA01.1 |  | Approval of Preliminary Master Programme | milestone | 0d | 2010-05-09 A | 2010-05-09 A | 8250SM1080 FF | 100% | 2010-05-04 | 2010-05-04 | 825_7-day w/o holidays | PDAT | 2545 |
| 8250MSA01.2 |  | Approval of Time Chainage Programme | milestone | 0d | 2010-05-09 A | 2010-05-09 A | 8250SM1200 FF | 100% | 2010-04-29 | 2010-04-29 | 825_7-day w/o holidays | PDAT | 2545 |
| 8250MSA01.3 |  | Approval of Environmental Management Plan | milestone | 0d | 2010-05-09 A | 2010-05-09 A | 8250SM1320 FF, 8250SM2780, 8250SM2900 | 100% | 2010-04-09 | 2010-04-09 | 825_7-day w/o holidays | PDAT | 2545 |
| 8250MSA01.4 |  | Approval of Quality Plan | milestone | 0d | 2010-05-09 A | 2010-05-09 A | 8250SM1440 FF | 100% | 2010-04-30 | 2010-04-30 | 825_7-day w/o holidays | PDAT | 2545 |
| 8250MSA01.5 |  | Approval of Method of Construction | milestone | 0d | 2010-05-09 A | 2010-05-09 A | 8250SM1560 FF | 100% |  |  | 825_7-day w/o holidays | PDAT | 2545 |
| 8250MSA01.6 |  | Approval of Submission Schedule | milestone | 0d | 2010-05-09 A | 2010-05-09 A | 8250SM1680 | 100% | 2010-04-07 | 2010-04-07 | 825_7-day w/o holidays | PDAT | 2545 |
| 8250MSA02 |  | Engineer's Confirmation of Satisfactory Implementation of Specified Plans | milestone | 0d | 2010-08-08 A | 2010-08-08 A | 8250SM1680, 8250SM2620, 8250SM4300, 8250SM1920, 8250SM1800, 8250SM4540, 8250SM4420, 8250SM3380 | 100% |  |  | 825_7-day w/o holidays | PDAT | 2545 |
| 8250MSA03 |  | Complete Diaphragm Wall of the TBM Launching Shaft | milestone | 0d | 2010-10-10 A | 2010-10-10 A | 8250DW1140 FF, 8250DW1160 FF | 100% | 2010-05-20 | 2010-05-20 | 825_7-day w/o holidays | PDAT | 2545 |
| 8250MSA04 |  | Complete Engineer's Office with Furniture & Equipment | milestone | 0d | 2011-01-30 A | 2011-01-30 A | 8250SE1160 FF, 8250SE1120 FF, 8250SE1180 FF | 100% | 2010-10-23 | 2010-10-23 | 825_7-day w/o holidays | PDAT | 2545 |
| 8250MSA06 |  | Engineer's Confirmation of Satisfactory Implementation of Specified Plans & Programming Management System | milestone | 0d | 2011-02-06 A | 2011-02-06 A | 8250MSA02 | 100% |  |  | 825_7-day w/o holidays | PDAT | 2545 |
| 8250MSA05 |  | Complete Fabrication & Factory Tests of the TBM & Ready for Shipment to HK | milestone | 0d | 2011-02-20 A | 2011-02-20 A | 8250TBM160 FF | 100% | 2010-12-12 | 2010-12-12 | 825_7-day w/o holidays | PDAT | 2545 |
| 8250MSA07.1 |  | Approval of Detailed Interface Specifications with the Designated Contractors | milestone | 0d | 2011-08-07 A | 2011-08-07 A | 8250SM2040 FF | 100% | 2012-07-31 | 2012-07-31 | 825_7-day w/o holidays | PDAT | 2545 |
| 8250MSA07.2 |  | Engineer's Confirmation of Satisfactory Implementation of Specified Plans | milestone | 0d | 2011-08-07 A | 2011-08-07 A | 8250MSA06 | 100% | 2012-07-31 | 2012-07-31 | 825_7-day w/o holidays | PDAT | 2545 |
| 8250MSA08 |  | Engineer's Confirmation of Satisfactory Implementation of Specified Plans & Programming Management System | milestone | 0d | 2012-02-05 A | 2012-02-05 A | 8250MSA07.2 | 100% |  |  | 825_7-day w/o holidays | PDAT | 2545 |
| 8250MSA09.2 |  | Approval of Detailed Interface Specifications with all the Designated Contractors | milestone | 0d | 2012-05-27 A | 2012-05-27 A | 8250SM2040 FF | 100% |  |  | 825_7-day w/o holidays | PDAT | 2545 |
| 8250MSA10 |  | Engineer's Confirmation of Satisfactory Implementation of Specified Plans | milestone | 0d | 2012-08-05 A | 2012-08-05 A | 8250MSA08 | 100% |  |  | 825_7-day w/o holidays | PDAT | 2545 |
| 8250MSA11 |  | Engineer's Confirmation of Satisfactory Implementation of Specified Plans & Programming Management System | milestone | 0d | 2013-02-28 A | 2013-02-28 A | 8250MSA10 | 100% | 2013-03-31 | 2013-03-31 | 825_7-day w/o holidays | PDAT | 2545 |
| 8250MSA09.1 |  | Complete First Tunnel Drive | milestone | 0d | 2013-07-31 A | 2013-07-31 A | 8250SB1330 FF | 100% | 2013-05-31 | 2013-05-31 | 825_7-day w/o holidays | PDAT | 2545 |
| 8250MSA12 |  | Engineer's Confirmation of Satisfactory Implementation of Specified Plans | milestone | 0d | 2013-08-11 A | 2013-08-11 A | 8250MSA11 | 100% |  |  | 825_7-day w/o holidays | PDAT | 2545 |
| 8250MSA13 |  | Achieve Deg1 Completion for the Tunnels from Approx.CH117+450(NB) to the Southern Contract Limit, Both UT & DT | milestone | 0d | 2015-07-23 A | 2015-07-23 A | 8250NB1184, 8250NB2060, 8250CC11890, 8250CC11560, 8250CC10110, 8250CC20170, 8250CC20190, 8250CC11580, 8250CC20480, 8250NB2010, 8250NB2020, 8250NB2100, 8250CC11575, 8250NB2090, 8250CC11900, 8250NB1182, 8250CC10105, 8250CC20160, 8250CC20180, 8250NB2030, 8250CC11600, 8250CC11545, 8250CC11570, 8250CC20350, 8250CC20120, 8250NB2050, 8250CC11565, 8250CC20110, 8250CC20130, 8250CC20140, 8250CC20150, 8250NB2040, 8250NB2070, 8250NB2080, 8250CC11590, 8250CC11610, 8250CC11550 | 100% | 2015-10-31 | 2015-10-31 | 825_7-day w/o holidays |  |  |
| 8250MSA14 |  | Approval of Draft Operating & Maintenance Manuals & Draft As-Built Drawings for Whole of the Works (wk15/17,16-Apr-17) | milestone | 0d | 2017-06-15 A | 2017-06-15 A | 8250SM2100 FF, 8250SM2220 FF | 100% | 2017-07-03 | 2017-07-03 | 825_7-day w/o holidays | PDAT | 2545 |
| 8250MSA15 |  | Approval of O&M Manuals & As-Built Drawings for Whole of the Works (wk19/17,14-May-17) | milestone | 0d | 2017-06-15 A | 2017-06-15 A | 8250SM2280 FF, 8250SM2160 FF, 8250MSA14 | 100% | 2017-08-16 | 2017-08-16 | 825_7-day w/o holidays | PDAT | 2545 |

| ID | WBS | Activity | Type | Duration | Start | Finish | Predecessors | Complete | Planned start | Planned finish | Total float | Calendar | 825 Phase | 825 Location | Critical Path 1 and 2 |
| --- | --- | --- | --- | --- | --- | --- | --- | --- | --- | --- | --- | --- | --- | --- | --- |
|  | 2 | **COST CENTRE B** |  |  | 2010-03-14 | 2015-03-29 |  |  |  |  |  |  |  |  |  |
| 8250MSB01 |  | Provide Evidence that TBM has been Procured | milestone | 0d | 2010-03-14 A | 2010-03-14 A | 8250TBM120 FF | 100% | 2010-03-10 | 2010-03-10 |  | 825_7-day w/o holidays | PDAT | 2545 |  |
| 8250MSB02 |  | Complete Fabrication & Factory Tests of the TBM & Ready for Shipment to HK | milestone | 0d | 2011-02-20 A | 2011-02-20 A | 8250TBM160 FF | 100% | 2010-12-12 | 2010-12-12 |  | 825_7-day w/o holidays | PDAT | 2545 |  |
| 8250MSB03 |  | Complete Assembly, T&C of TBM & Associated Equipment including Surface Equipment and to Start the 1st Tunnel Drive | milestone | 0d | 2011-08-07 A | 2011-08-07 A | 8250SB1260 FF | 100% | 2011-02-28 | 2011-02-28 |  | 825_7-day w/o holidays | PDAT | 2545 |  |
| 8250MSB04 |  | Complete Assembly, T&C of TBM & Associated Equipment including Surface Equipment and to Start the 2nd Tunnel Drive | milestone | 0d | 2013-06-30 A | 2013-06-30 A | 8250NB1060 FF | 100% | 2013-06-29 | 2013-06-29 |  | 825_7-day w/o holidays | PDAT | 2545 |  |
| 8250MSB05 |  | Complete Final Disassembly of the TBM | milestone | 0d | 2015-03-29 A | 2015-03-29 A | 8250NBDIS0035, 8250NBDIS0510, 8250NBDIS0540 FS-0.29d, 8250NBDIS0370, 8250NBDIS0530 | 100% | 2015-03-31 | 2015-03-31 |  | 825_7-day w/o holidays | PDAT | 2545 |  |
|  | 3 | **COST CENTRE C** |  |  | 2010-06-27 | 2017-07-31 |  |  |  |  |  |  |  |  |  |
| 8250MSC01.1 |  | Approval of Tunnel Lining Design | milestone | 0d | 2010-06-27 A | 2010-06-27 A | 8250DA1720 FF | 100% | 2010-06-23 | 2010-06-23 |  | 825_7-day w/o holidays | PDAT | 2545 |  |
| 8250MSC01.2 |  | Approval of Tunnel Segment Mould Design | milestone | 0d | 2010-06-27 A | 2010-06-27 A | 8250SM5640 FF | 100% | 2010-04-26 | 2010-04-26 |  | 825_7-day w/o holidays | PDAT | 2545 |  |
| 8250MSC02 |  | Complete 20% of Tunnel Drive for NB | milestone | 0d | 2013-11-16 A | 2013-11-16 A | 8250CC09990 | 100% | 2013-10-21 | 2013-10-21 |  | 825_7-day w/o holidays | PDAT | 2545 |  |
| 8250MSC03 |  | Complete 35% of Tunnel Drive for NB | milestone | 0d | 2014-02-04 A | 2014-02-04 A | 8250CC10035 | 100% | 2014-02-18 | 2014-02-18 |  | 825_7-day w/o holidays | PDAT | 2545 |  |
| 8250MSC04 |  | Complete 90% of Tunnel Drive for NB | milestone | 0d | 2014-08-30 A | 2014-08-30 A | 8250CC10060 | 100% | 2014-08-31 | 2014-08-31 |  | 825_7-day w/o holidays | PDAT | 2545 |  |
| 8250MSC05 |  | Complete 50% of Tunnel Invert &Walkway for NB | milestone | 0d | 2014-11-22 A | 2014-11-22 A | 8250CC10105, 8250NB1182 | 100% | 2014-12-17 | 2014-12-17 |  | 825_7-day w/o holidays | PDAT | 2545 |  |
| 8250MSC06 |  | Achieve Degree 1 Completion for the Tunnel Approx CH117+450(NB) to the Southern Contract Limit | milestone | 0d | 2015-07-23 A | 2015-07-23 A | 8250CC11660, 8250CP1330, 8250CC11710, 8250CC10105, 8250CC20110, 8250CC20140, 8250NB2040, 8250NB2060, 8250CC11610 FF, 8250CC11900 FF, 8250CC11730, 8250CC20120, 8250NB2030, 8250NB2080, 8250CC10020, 8250CC10070, 8250NB1220, 8250CC11550, 8250CC11870, 8250CP1260, 8250CC11830, 8250CC11690, 8250CC11370, 8250CC11700, 8250CC20190, 8250CC11890 FF, 8250CC11565, 8250GT1340, 8250CC11820, 8250CP1415 FS-2d, 8250CP1200, 8250NB2010, 8250NB2070, 8250CC10050, 8250CC10080, 8250NB1280, 8250CC11590, 8250CC10980, 8250CC11860, 8250CC11740, 8250CC20350, 8250CC10110, 8250DA1995, 8250MSE09, 8250CC20170, 8250NB1240, 8250CC11600, 8250GT1240, 8250CP1030, 8250CP1385, 8250CC20480, 8250CC20130, 8250CC20150, 8250NB1184 FF, 8250NB2020, 8250NB1300 FS-6d, 8250NB1380, 8250CC11545, 8250CC11570, 8250CP1080, 8250CP1270, 8250CP1490, 8250CP1210, 8250CC10040, 8250NB1320, 8250GT1700, 8250GT1780, 8250CC11790, 8250CC11800, 8250CC11880, 8250CC20160, 8250CC20180, 8250NB2050, 8250NB2090, 8250NB2100, 8250NB1340, 8250NB1360 FS-2d, 8250CC11560, 8250CC11580 | 100% | 2015-10-31 | 2015-10-31 |  | 825_7-day w/o holidays | PDAT | 2545 |  |
| 8250MSC07 |  | Complete All Works for NB Tunnel (wk38/16,25-Sep-16) | milestone | 0d | 2017-07-31 | 2017-07-31 | 8250GT1780 FF, 8250CP1030 FF, 8250CC10440, 8250CP1385 FF, 8250CC20350, 8250NB1200 FF, 8250NB1220 FF, 8250NB1280 FF, 8250CP1080 FF, 8250CP1490 FF, 8250CP1200 FF, 8250CC10070 FF, 8250NB1240 FF, 8250NB1300 FF, 8250GT1240 FF, 8250NB1360 FF, 8250NB1380 FF, 8250CP1330 FF, 8250CP1210 FF, 8250DA1995 FF, 8250NB1184 FF, 8250NB1340 FF, 8250CC10050 FF, 8250NB1320 FF, 8250GT1340 FF, 8250GT1700 FF, 8250CP1260 FF, 8250CC10080 FF, 8250CP1270 FF, 8250CP1415 FF, 8250CC10020 FF, 8250CC10040 FF |  |  |  | 365d | 825_7-day w/o holidays | PDAT | 2545 | CP |
|  | 4 | **COST CENTRE D** |  |  | 2011-03-13 | 2017-07-31 |  |  |  |  |  |  |  |  |  |
| 8250MSD01 |  | Complete 5% (68 Rings) of Approved Segments Manufacturing for SB | milestone | 0d | 2011-03-13 A | 2011-03-13 A | 8250PS1100 FF | 100% | 2010-07-17 | 2010-07-17 |  | 825_7-day w/o holidays | PDAT | 2545 |  |
| 8250MSD02 |  | Complete 25% (341 Rings) of Approved Segments Manufacturing for SB | milestone | 0d | 2011-06-26 A | 2011-06-26 A | 8250PS1100 FF | 100% | 2010-10-22 | 2010-10-22 |  | 825_7-day w/o holidays | PDAT | 2545 |  |
| 8250MSD03a |  | Complete 13% of Tunnel Drive for SB | milestone | 0d | 2012-03-09 A | 2012-03-09 A | 8250SB1330 | 100% | 2012-02-07 | 2012-02-07 |  | 825_7-day w/o holidays | PDAT | 2545 |  |
| 8250MSD03b |  | Complete 30% of Tunnel Drive for SB | milestone | 0d | 2012-07-16 A | 2012-07-16 A | 8250SB1330 | 100% | 2012-12-01 | 2012-12-01 |  | 825_7-day w/o holidays | PDAT | 2545 |  |
| 8250MSD04 |  | Complete 60% of Tunnel Drive for SB | milestone | 0d | 2013-01-17 A | 2013-01-17 A | 8250SB1330 FF | 100% | 2013-01-31 | 2013-01-31 |  | 825_7-day w/o holidays | PDAT | 2545 |  |
| 8250MSD05 |  | Complete 100% of Tunnel Drive for SB | milestone | 0d | 2013-07-31 A | 2013-07-31 A | 8250SB1330 FF | 100% | 2013-05-31 | 2013-05-31 |  | 825_7-day w/o holidays | PDAT | 2545 |  |
| 8250MSD06 |  | Complete 50% of Tunnel Invert & Walkway for SB | milestone | 0d | 2014-01-31 A | 2014-01-31 A | 8250SB1604 | 100% | 2014-04-04 | 2014-04-04 |  | 825_7-day w/o holidays | PDAT | 2545 |  |
| 8250MSD07 |  | Achieve Degree 1 Completion for the Tunnel from Approximate CH117+450(NB) to the Southern Contract Limit | milestone | 0d | 2014-10-30 A | 2014-10-30 A | 8250CP1415, 8250CP2100, 8250CP2130, 8250CP2160, 8250SB1604 FF, 8250CP1270, 8250CP1150, 8250CP2070, 8250CP1330, 8250CP1385, 8250SB1624 FF, 8250CP2170, 8250CP2000, 8250CP2060, 8250CC10170, 8250CP1490, 8250CC10270, 8250CP2120, 8250CP2030, 8250SB1330 FF, 8250CP2150, 8250CP1090, 8250CP2140, 8250CP2020, 8250CP1030, 8250CP1210, 8250CP2090, 8250CP2040 | 100% | 2015-03-20 | 2015-03-20 |  | 825_7-day w/o holidays | PDAT | 2545 |  |
| 8250MSD08 |  | Complete All Works for SB Tunnel (wk38/16,25-Sep-16) | milestone | 0d | 2017-07-31 | 2017-07-31 | 8250SB1624 FF, 8250SB1330 FF, 8250CC10440, 8250SB1604 FF |  |  |  | 365d | 825_7-day w/o holidays | PDAT | 2545 | CP |

Notes:
- 8250MSB05: Explanation: 24Feb2014 - Amended Activity Description in / correspondence to MTRCL Letter 825-MIP-CM(XRLT)-CCM-005199 dated / 28Jan2014 / Old Activity Description - "Complete Final / Disassembly of the TBM"
- 8250MSC03: Explanation: 24Feb2014 - Amended Activity Description in / correspondence to MTRCL Letter 825-MIP-CM(XRLT)-CCM-005199 dated / 28Jan2014 / Old Activity Description - "Complete 60% of / Tunnel Drive for NB"
- 8250MSC06: Explanation: 24Feb2014 - Amended Activity Description in / correspondence to MTRCL Letter 825-MIP-CM(XRLT)-CCM-005199 dated / 28Jan2014 / Old Activity Description - "Achieve Degree 1 / Completion for the NB Tunnel South of NB CH 117+450"
- 8250MSD07: Explanation: 24Feb2014 - Amended Activity Description in / correspondence to MTRCL Letter 825-MIP-CM(XRLT)-CCM-005199 dated / 28Jan2014 / Old Activity Description - "Achieve Degree 1 / Completion for the NB Tunnel South of NB CH 117+450"

| ID | WBS | Activity | Type | Duration | Start | Finish | Predecessors | Complete | Planned start | Planned finish | Total float | Calendar | 825 Phase | 825 Location |
| --- | --- | --- | --- | --- | --- | --- | --- | --- | --- | --- | --- | --- | --- | --- |
|  | 5 | **COST CENTRE E** |  |  | 2010-05-10 | 2017-07-31 |  |  |  |  |  |  |  |  |
| 8250MSE01 |  | Complete 5% of Diaphragm Wall | milestone | 0d | 2010-05-10 A | 2010-05-10 A | 8250DW1140 FF | 100% | 2010-05-28 | 2010-05-28 |  | 825_7-day w/o holidays | PDAT | 2545 |
| 8250MSE04 |  | Complete Contamination Remediation Works in Mai Po Site | milestone | 0d | 2010-08-07 A | 2010-08-07 A | 8250DC1420 FF, 8250DC1140 FF, 8250DC1280 FF | 100% | 2010-06-15 | 2010-06-15 |  | 825_7-day w/o holidays | PDAT | 2545 |
| 8250MSE02 |  | Complete 90% of Diaphragm Wall Including the Diaphragm Wall in Works Area 1.5 | milestone | 0d | 2010-09-12 A | 2010-09-12 A | 8250DW1140 FF | 100% | 2010-09-22 | 2010-09-22 |  | 825_7-day w/o holidays | PDAT | 2545 |
| 8250MSE03 |  | Complete 90% of Excavation | milestone | 0d | 2011-04-30 A | 2011-04-30 A | 8250ELS700 FF-2.2d | 100% | 2011-02-19 | 2011-02-19 |  | 825_7-day w/o holidays | PDAT | 2545 |
| 8250MSE07 |  | TBM Construction Shaft for Contract 826 within Works Area 1.5, Including Temporary Access Opening | milestone | 0d | 2013-04-07 A | 2013-04-07 A | 8250VB1580 FF | 100% | 2016-09-21 | 2016-09-21 |  | 825_7-day w/o holidays | PDAT | 2545 |
| 8250MSE06 |  | Complete Structure of Mai Po Ventilation Building up to Ground Level | milestone | 0d | 2013-08-24 A | 2013-08-24 A | 8250VB1560 FF | 100% | 2013-04-13 | 2013-04-13 |  | 825_7-day w/o holidays | PDAT | 2545 |
| 8250MSE08 |  | Achieve Degree 1 Completion for all Rooms & Common Areas within Mai Po Ventilation Building | milestone | 0d | 2014-01-31 A | 2014-01-31 A | 8250VB1704 FF | 100% | 2013-10-12 | 2013-10-12 |  | 825_7-day w/o holidays | PDAT | 2545 |
| 8250MSE10 |  | All Permanent Doors Installed | milestone | 0d | 2014-11-30 A | 2014-11-30 A | 8250VB1760 FF | 100% | 2015-01-31 | 2015-01-31 |  | 825_7-day w/o holidays | PDAT | 2545 |
| 8250MSE09 |  | Achieve Deg1 Completion for the Cut&Cover Tunnels fr ApproxCH117+450(NB) to the Southern End of Cut&Cover Tunnels Deg3 | milestone | 0d | 2015-07-23 A | 2015-07-23 A | 8250CC7440 FF, 8250CC9480, 8250CC7520, 8250VB1724 FF | 100% | 2015-10-31 | 2015-10-31 |  | 825_7-day w/o holidays | PDAT | 2545 |
| 8250MSE05 |  | Complete Filling to +7mPD & Removal of Surcharge in Zone 1 as in Drwg 825/W/320/OAP/T04/821 (wk52/16,1-Jan-17) | milestone | 0d | 2017-07-31 | 2017-07-31 | 8250BS2225, 8250BS2255, 8250BS2240 |  |  |  | 365d | 825_7-day w/o holidays | PDAT | 2545 |
| 8250MSE11 |  | All Works Complete and Statutory Inspections Successfully Undertaken (wk38/16,25-Sep-16) | milestone | 0d | 2017-07-31 | 2017-07-31 | 8250KD4C |  |  |  | 365d | 825_7-day w/o holidays | PDAT | 2545 |
|  | 6 | **COST CENTRE F** |  |  | 2010-05-31 | 2017-07-31 |  |  |  |  |  |  |  |  |
| 8250MSF01 |  | Complete 75% Installation of Ground Settlement Markers in Mai Po Area | milestone | 0d | 2010-05-31 A | 2010-05-31 A | 8250IN1020 FF | 100% | 2010-05-20 | 2010-05-20 |  | 825_7-day w/o holidays | PDAT | 2545 |
| 8250MSF02 |  | Complete Barging Point in Works Area 1.15 | milestone | 0d | 2010-10-10 A | 2010-10-10 A | 8250BP1100, 8250BP1140 FF | 100% | 2010-08-05 | 2010-08-05 |  | 825_7-day w/o holidays | PDAT | 2545 |
| 8250MSF03 |  | Submit Instrumentation Monitoring Report No. 1 | milestone | 0d | 2011-04-10 A | 2011-04-10 A | 8250SM2320 FF, 8250SM3740 FF | 100% | 2011-04-02 | 2011-04-02 |  | 825_7-day w/o holidays | PDAT | 2545 |
| 8250MSF04 |  | Submit Instrumentation Monitoring Report No. 2 | milestone | 0d | 2011-10-09 A | 2011-10-09 A | 8250SM2360 FF | 100% | 2011-09-29 | 2011-09-29 |  | 825_7-day w/o holidays | PDAT | 2545 |
| 8250MSF05 |  | Submit Instrumentation Monitoring Report No. 3 | milestone | 0d | 2012-04-08 A | 2012-04-08 A | 8250SM2400 FF | 100% | 2012-03-30 | 2012-03-30 |  | 825_7-day w/o holidays | PDAT | 2545 |
| 8250MSF06 |  | Submit Instrumentation Monitoring Report No. 4 | milestone | 0d | 2012-10-16 A | 2012-10-16 A | 8250SM2440 FF | 100% | 2012-10-31 | 2012-10-31 |  | 825_7-day w/o holidays | PDAT | 2545 |
| 8250MSF07 |  | Submit Instrumentation Monitoring Report No. 5 | milestone | 0d | 2013-06-29 A | 2013-06-29 A | 8250SM2480 FF | 100% | 2013-04-05 | 2013-04-05 |  | 825_7-day w/o holidays | PDAT | 2545 |
| 8250MSF08 |  | Submit Instrumentation Monitoring Report No. 6 | milestone | 0d | 2013-10-06 A | 2013-10-06 A | 8250SM2520 FF | 100% | 2013-09-30 | 2013-09-30 |  | 825_7-day w/o holidays | PDAT | 2545 |
| 8250MSF09 |  | Achieve Degree 1 Completion for All Cross Passages | milestone | 0d | 2015-07-23 A | 2015-07-23 A | 8250CC11870, 8250CC11370, 8250CC20110, 8250CC20160, 8250CC20180, 8250CC20190, 8250CC10040 FF, 8250CC11550, 8250GT1340 FF, 8250CC11730, 8250CP1490 FF, 8250CC20140, 8250NB1340 FF, 8250CC11590, 8250CC11610, 8250CC11545, 8250CC11565, 8250GT1700 FF, 8250CC10980, 8250CP1330 FF, 8250CC11800, 8250CC11860, 8250NB2100, 8250CC10070 FF, 8250NB1360 FF-2d, 8250NB1280 FF, 8250CC11890, 8250CC11580, 8250GT1780 FF, 8250CP1030 FF, 8250CC11740, 8250CP1260 FF, 8250CC11700, 8250CC20170, 8250CC10020 FF, 8250NB1380 FF, 8250CC11570, 8250CC11660, 8250CC11790, 8250CC11710, 8250CC20150, 8250CC10080 FF, 8250NB1320 FF, 8250CC11575, 8250CP1270 FF, 8250CC11820, 8250CP1415 FF-2d, 8250CC11690, 8250CC20120, 8250CC20130, 8250NB1240 FF, 8250CC11830, 8250CC11880, 8250CP1210 FF, 8250NB1220 FF, 8250CC11600, 8250CC11560, 8250CP1080 FF, 8250CP1385 FF, 8250CP1200 FF, 8250DA1995 FF, 8250CC10050 FF, 8250NB1300 FF-6d, 8250CC11900, 8250GT1240 FF | 100% | 2015-10-31 | 2015-10-31 |  | 825_7-day w/o holidays | PDAT | 2545 |
| 8250MSF10 |  | Complete All Works (Week 30/17,30-Jul-17) | milestone | 0d | 2017-07-31 | 2017-07-31 | 8250GT1780 FF, 8250VB1780 FF, 8250CC20390 FF, 8250CP1415 FF, 8250CP1330 FF, 8250CP1210 FF, 8250CC10050 FF, 8250CC10070 FF, 8250NB1200 FF, 8250NB1320 FF, 8250SB1624 FF, 8250SB1604 FF, 8250NB1280 FF, 8250NB1184 FF, 8250CC10080 FF, 8250GT1700 FF, 8250VB1760 FF, 8250CC7430 FF, 8250CP1385 FF, 8250NB1340 FF, 8250NB1360 FF, 8250NB1380 FF, 8250EW3110 FF, 8250CC9464 FF, 8250CC7440 FF, 8250CP1270 FF, 8250NB1300 FF, 8250CP1490 FF, 8250CC10040 FF, 8250CC10480-100 FF, 8250BS2410-100 FF, 8250BS2255-100 FF, 8250BS2280, 8250BS2260 |  |  |  | 365d | 825_7-day w/o holidays | PDAT | 2545 |
|  | 6 | **OTHER IMPORTANT DATES** |  |  | 2010-11-30 | 2014-10-16 |  |  |  |  |  |  |  |  |
| 8250ID12 |  | Complete and Provide Cranage and Berthing Facilities to CEDD Mines Division at EUP | milestone | 0d | 2010-11-30 A | 2010-11-30 A | 8250BP1080 FF | 100% | 2010-07-08 | 2010-07-08 |  | 825_7-day w/o holidays | PDAT | 2547 |
| 8250ID02 |  | Start Production of Tunnel Segment | milestone | 0d | 2011-03-01 A | 2011-03-01 A | 8250PS1090 SS | 100% | 2010-06-23 | 2010-06-23 |  | 825_7-day w/o holidays | PDAT | 2547 |
| 8250ID01 |  | First Batch of TBM Delivery | milestone | 0d | 2011-06-02 A | 2011-06-02 A | 8250TBM180 SS | 100% | 2010-12-29 | 2010-12-29 |  | 825_7-day w/o holidays | PDAT | 2547 |
| 8250ID06 |  | TBM Initial Drive for SB tunnel | milestone | 0d | 2011-09-07 A | 2011-09-07 A | 8250SB1280 SS | 100% | 2012-12-16 | 2012-12-16 |  | 825_7-day w/o holidays | PDAT | 2547 |
| 8250ID08 |  | Complete Temporary Access Shaft | milestone | 0d | 2013-02-26 A | 2013-02-26 A | 8250VB1500 FF | 100% | 2013-04-05 | 2013-04-05 |  | 825_7-day w/o holidays | PDAT | 2547 |
| 8250ID03 |  | TBM Initial Drive for NB Tunnel | milestone | 0d | 2013-07-16 A | 2013-07-16 A | 8250NB1080 SS | 100% | 2013-06-14 | 2013-06-14 |  | 825_7-day w/o holidays | PDAT | 2547 |
| 8250ID10 |  | Complete Ventilation Building Structure | milestone | 0d | 2013-12-14 A | 2013-12-14 A | 8250VB1680 FF | 100% | 2013-10-12 | 2013-10-12 |  | 825_7-day w/o holidays | PDAT | 2547 |
| 8250KD3A_1 |  | Backfilling Completion in Subsequent to KD3A Requirements | milestone | 0d | 2014-02-21 A | 2014-02-21 A | 8250ID10, 8250VB1580 | 100% | 2013-11-01 | 2013-11-01 |  | 825_7-day w/o holidays | PDAT | 2525 |
| 8250ID18 |  | Partial Handover for Cut and Cover Bay 2 to Bay 6 | milestone | 0d | 2014-05-31 A | 2014-05-31 A | 8250VB1724 FF | 100% | 2014-10-31 | 2014-10-31 |  | 825_7-day w/o holidays |  |  |
| 8250ID15 |  | 830 - Hand Over of SB Tunnels | milestone | 0d | 2014-10-16 A | 2014-10-16 A | 8250CC10100, 8250SB1604 | 100% | 2014-08-31 | 2014-08-31 |  | 825_7-day w/o holidays | PDAT | 2547 |

Notes:
- 8250MSE07: Explanation: 24Feb2014 - Amended Activity Description in / correspondence to MTRCL Letter 825-MIP-CM(XRLT)-CCM-005199 dated / 28Jan2014 / Old Activity Description - "TBM Shaft for / Contract 826 within Works Area 1.5, Including Temporary Access Opening & / Backfill"
- 8250MSE09: Explanation: 24Feb2014 - Amended Activity Description in / correspondence to MTRCL Letter 825-MIP-CM(XRLT)-CCM-005199 dated / 28Jan2014 / Old Activity Description - "TBM Shaft for / Contract 826 within Works Area 1.5, Including Temporary Access Opening & / Backfill" / New Description - Achieve Degree 1 Completion / for the Cut & Cover Tunnels from Approximate CH117+450(NB) to the Southern / End of Cut & Cover Tunnels and Degree 3 Completion for All Rooms and Common / Areas within the Mai Po Ventilation Building

| ID | WBS | Activity | Type | Duration | Start | Finish | Predecessors | Complete | Planned start | Planned finish | Constraint | Calendar | 825 Phase | 825 Location | 825 Sub-location |
| --- | --- | --- | --- | --- | --- | --- | --- | --- | --- | --- | --- | --- | --- | --- | --- |
|  | 7 | **COORDINATED INTERFACE DATES WITH 824 & 826** |  |  | 2010-09-20 | 2014-08-30 |  |  |  |  |  |  |  |  |  |
|  | 1 | **COORDINATED INTERFACE DATES WITH 826** |  |  | 2010-09-20 | 2013-02-27 |  |  |  |  |  |  |  |  |  |
| 8250UA0030 |  | Works Area 1.4B - First time |  | 129.8d | 2010-09-20 A | 2011-01-09 A | 8250HO041 | 100% | 2010-09-13 | 2011-01-21 | start on or after 2010-09-13 | 825_7-day w/o holidays | PDAT | 2548 | 826CID |
| 8250PD0040 |  | Provision of TBM Retrieval shaft at MPV (7-Apr-2013) | milestone | 0d | 2013-02-27 A | 2013-02-27 A | 8250VB1520 SS, 8250CC1040 | 100% | 2014-08-31 | 2014-08-31 |  | 825_7-day w/o holidays | PDAT | 2548 | 826CID |
|  | 2 | **826 CONSTRUCTION AND SITE WORKS ADJACENT TO MPV** |  |  | 2010-09-20 | 2014-08-30 |  |  |  |  |  |  |  |  |  |
| 8250SWMP0030 |  | Establish Works Area 1.4B |  | 33d | 2010-09-20 A | 2010-10-16 A | 8250UA0030 SS | 100% | 2010-09-13 | 2010-10-23 |  |  | PDAT | 2548 | 826CON |
| 8250SWMP0040 |  | Set Up Grouting Plant |  | 13.2d | 2010-09-20 A | 2010-09-27 A | 8250SWMP0030 SS | 100% | 2010-09-13 | 2010-09-29 |  |  | PDAT | 2548 | 826CON |
| 8250SWMP0130 |  | Dismantle & Remove Grouting Plant |  | 6.6d | 2010-12-10 A | 2010-12-12 A | 8250SWMP0040 | 100% | 2010-12-18 | 2010-12-28 |  |  | PDAT | 2548 | 826CON |
| 8250SWMP0140 |  | Vacate Works Area 1.4B for 825 |  | 11d | 2010-12-13 A | 2011-01-16 A | 8250SWMP0130 | 100% | 2010-12-28 | 2011-01-10 |  |  | PDAT | 2548 | 826CON |
| 8250SWMP0150 |  | Install Instrumentation along Tunnel Alignment |  | 130.9d | 2011-01-10 A | 2011-06-09 A | 8250SWMP0030 | 100% | 2011-01-10 | 2011-06-23 |  |  | PDAT | 2548 | 826CON |
| 8250SWMP0180 |  | Re-Establish MPV Works Areas |  | 29d | 2014-04-01 A | 2014-04-30 A | 8250PD0040 SS | 100% | 2014-09-01 | 2014-10-07 |  |  | PDAT | 2548 | 826CON |
| 8250SWMP0190 |  | Install Ground Level Support for Cooling Tower |  | 44d | 2014-05-01 A | 2014-07-31 A | 8250SWMP0180 | 100% | 2014-10-08 | 2014-11-27 |  |  | PDAT | 2548 | 826CON |
| 8250SWMP0230 |  | Dismantle and Remove Ground Freezing Plant |  | 44d | 2014-08-01 A | 2014-08-30 A | 8250SWMP0190 | 100% | 2014-11-28 | 2015-01-21 |  |  | PDAT | 2548 | 826CON |
|  | 2 | **SUBMISSIONS** |  |  | 2010-02-01 | 2017-08-12 |  |  |  |  |  |  |  |  |  |
|  | 11 | **GENERAL** |  |  | 2010-02-01 | 2010-12-28 |  |  |  |  |  |  |  |  |  |
| 8250SM3840 |  | Prepare Method Statement for Ground Investigation Works |  | 24.2d | 2010-02-01 A | 2010-03-01 A | 8250KD00 | 100% | 2010-02-01 | 2010-03-04 |  |  | SUBM |  |  |
| 8250SM5540 |  | Prepare Design Drawing for Segment Mould |  | 52.8d | 2010-02-01 A | 2010-03-31 A | 8250PS1020 | 100% | 2010-02-01 | 2010-04-10 |  |  | SUBM |  |  |
| 8250SM2640 |  | Prepare Layouts of Site Offices, Workshops and Storage Structures |  | 26.4d | 2010-02-02 A | 2010-03-04 A | 8250KD00 | 100% | 2010-02-02 | 2010-03-08 |  |  | SUBM |  |  |
| 8250SM3160 |  | Prepare Tree Preservation and Protection Plan |  | 26.4d | 2010-02-24 A | 2010-03-23 A | 8250KD00 | 100% | 2010-02-24 | 2010-03-26 |  |  | SUBM |  |  |
| 8250SM3860 |  | Submit Method Statement for Ground Investigation Works | milestone | 0d | 2010-03-01 A | 2010-03-01 A | 8250SM3840 | 100% |  |  |  | 825_7-day w/o holidays | SUBM |  |  |
| 8250SM3880 |  | Engineer Review on Method Statement for Ground Investigation Works |  | 26.4d | 2010-03-02 A | 2010-03-29 A | 8250SM3860 | 100% | 2010-03-02 | 2010-04-01 |  |  | SUBM |  |  |
| 8250SM2800 |  | Prepare Subcontractor Management Plan |  | 19.8d | 2010-03-03 A | 2010-03-23 A | 8250KD00 | 100% | 2010-03-03 | 2010-03-25 |  |  | SUBM |  |  |
| 8250SM2660 |  | Submit Layouts of Site Offices, Workshops and Storage Structures | milestone | 0d | 2010-03-04 A | 2010-03-04 A | 8250SM2640 | 100% |  |  |  | 825_7-day w/o holidays | SUBM |  |  |
| 8250SM2680 |  | Engineer Review on Layouts of Site Offices, Workshops and Storage Structures |  | 26.4d | 2010-03-05 A | 2010-04-01 A | 8250SM2660 | 100% | 2010-03-05 | 2010-04-09 |  |  | SUBM |  |  |
| 8250SM2760 |  | Prepare Contractor's Organization Chart |  | 13.2d | 2010-03-12 A | 2010-03-25 A | 8250SM2640 | 100% | 2010-03-12 | 2010-03-27 |  |  | SUBM |  |  |
| 8250SM2820 |  | Submit Subcontractor Management Plan | milestone | 0d | 2010-03-23 A | 2010-03-23 A | 8250SM2800 | 100% |  |  |  | 825_7-day w/o holidays | SUBM |  |  |
| 8250SM3180 |  | Submit Tree Preservation and Protection Plan | milestone | 0d | 2010-03-23 A | 2010-03-23 A | 8250SM3160 | 100% |  |  |  | 825_7-day w/o holidays | SUBM |  |  |
| 8250SM2840 |  | Engineer Review on Subcontractor Management Plan |  | 26.4d | 2010-03-24 A | 2010-04-24 A | 8250SM2820 | 100% | 2010-03-24 | 2010-04-28 |  |  | SUBM |  |  |
| 8250SM3200 |  | Engineer Review on Tree Preservation and Protection Plan |  | 26.4d | 2010-03-24 A | 2010-04-24 A | 8250SM3180 | 100% | 2010-03-24 | 2010-04-28 |  |  | SUBM |  |  |
| 8250SM2780 |  | Submit Contractor's Organization Chart | milestone | 0d | 2010-03-25 A | 2010-03-25 A | 8250SM2760 | 100% |  |  |  | 825_7-day w/o holidays | SUBM |  |  |
| 8250SM3900 |  | Revise Method Statement for Ground Investigation Works |  | 13.2d | 2010-03-30 A | 2010-04-16 A | 8250SM3880 | 100% | 2010-03-30 | 2010-04-19 |  |  | SUBM |  |  |
| 8250SM5560 |  | Submit Design Drawing for Segment Mould | milestone | 0d | 2010-03-31 A | 2010-03-31 A | 8250SM5540 | 100% |  |  |  | 825_7-day w/o holidays | SUBM |  |  |
| 8250SM5580 |  | Engineer Review on Design Drawing for Segment Mould |  | 6.6d | 2010-04-01 A | 2010-04-12 A | 8250SM5560 | 100% | 2010-04-01 | 2010-04-13 |  |  | SUBM |  |  |
| 8250SM2700 |  | Revise Layouts of Site Offices, Workshops and Storage Structures |  | 13.2d | 2010-04-07 A | 2010-04-20 A | 8250SM2680 | 100% | 2010-04-07 | 2010-04-22 |  |  | SUBM |  |  |
| 8250SM4800 |  | Prepare Design for Barging Point Facilities incl Weigh Bridges and Cranage for Explosives Unloading |  | 19.8d | 2010-04-10 A | 2010-04-30 A | 8250KD00 | 100% | 2010-04-10 | 2010-05-04 |  |  | SUBM |  |  |
| 8250SM5600 |  | Revise Design Drawing for Segment Mould |  | 6.6d | 2010-04-13 A | 2010-04-19 A | 8250SM5580 | 100% | 2010-04-13 | 2010-04-20 |  |  | SUBM |  |  |
| 8250SM3920 |  | Re-Submit Method Statement for Ground Investigation Works | milestone | 0d | 2010-04-16 A | 2010-04-16 A | 8250SM3900 | 100% |  |  |  | 825_7-day w/o holidays | SUBM |  |  |
| 8250SM3940 |  | Engineer Review and Approval on Method Statement for Ground Investigation Works |  | 26.4d | 2010-04-17 A | 2010-05-15 A | 8250SM3920 | 100% | 2010-04-17 | 2010-05-19 |  |  | SUBM |  |  |
| 8250SM5620 |  | Re-Submit Design Drawing for Segment Mould | milestone | 0d | 2010-04-19 A | 2010-04-19 A | 8250SM5600 | 100% |  |  |  | 825_7-day w/o holidays | SUBM |  |  |
| 8250SM5640 |  | Engineer Review and Approval on Design Drawing for Segment Mould |  | 6.6d | 2010-04-20 A | 2010-04-26 A | 8250SM5620 | 100% | 2010-04-20 | 2010-04-27 |  |  | SUBM |  |  |
| 8250SM2720 |  | Re-Submit Layouts of Site Offices, Workshops and Storage Structures | milestone | 0d | 2010-04-20 A | 2010-04-20 A | 8250SM2700 | 100% |  |  |  | 825_7-day w/o holidays | SUBM |  |  |
| 8250SM2740 |  | Engineer Review and Approval on Layouts of Site Offices, Workshops and Storage Structures |  | 26.4d | 2010-04-21 A | 2010-05-20 A | 8250SM2720 | 100% | 2010-04-21 | 2010-05-24 |  |  | SUBM |  |  |
| 8250SM2860 |  | Revise Subcontractor Management Plan |  | 13.2d | 2010-04-26 A | 2010-05-10 A | 8250SM2840 | 100% | 2010-04-26 | 2010-05-12 |  |  | SUBM |  |  |
| 8250SM3220 |  | Revise Tree Preservation and Protection Plan |  | 13.2d | 2010-04-26 A | 2010-05-10 A | 8250SM3200 | 100% | 2010-04-26 | 2010-05-12 |  |  | SUBM |  |  |
| 8250SM4820 |  | Submit Design for Barging Point Facilities incl Weighbridges and Cranage for Explosives Unloading | milestone | 0d | 2010-04-30 A | 2010-04-30 A | 8250SM4800 | 100% |  |  |  | 825_7-day w/o holidays | SUBM |  |  |
| 8250SM4840 |  | Engineer Review on Design for Barging Point Facilities incl Weighbridges and Cranage for Explosives Unloading |  | 6.6d | 2010-05-03 A | 2010-05-08 A | 8250SM4820 | 100% | 2010-05-03 | 2010-05-10 |  |  | SUBM |  |  |
| 8250SM4920 |  | Prepare Design for the Engineer's Site Office |  | 19.8d | 2010-05-08 A | 2010-05-31 A | 8250KD00 | 100% | 2010-05-08 | 2010-06-02 |  |  | SUBM |  |  |
| 8250SM4860 |  | Revise Design for Barging Point Facilities incl Weighbridges and Cranage for Explosives Unloading |  | 6.6d | 2010-05-10 A | 2010-05-15 A | 8250SM4840 | 100% | 2010-05-10 | 2010-05-17 |  |  | SUBM |  |  |
| 8250SM2880 |  | Re-Submit Subcontractor Management Plan | milestone | 0d | 2010-05-10 A | 2010-05-10 A | 8250SM2860 | 100% |  |  |  | 825_7-day w/o holidays | SUBM |  |  |
| 8250SM3240 |  | Re-Submit Tree Preservation and Protection Plan | milestone | 0d | 2010-05-10 A | 2010-05-10 A | 8250SM3220 | 100% |  |  |  | 825_7-day w/o holidays | SUBM |  |  |
| 8250SM2900 |  | Engineer Review and Approval on Subcontractor Management Plan |  | 26.4d | 2010-05-11 A | 2010-06-09 A | 8250SM2880 | 100% | 2010-05-11 | 2010-06-11 |  |  | SUBM |  |  |
| 8250SM3260 |  | Engineer Review and Approval on Tree Preservation and Protection Plan |  | 26.4d | 2010-05-11 A | 2010-06-09 A | 8250SM3240 | 100% | 2010-05-11 | 2010-06-11 |  |  | SUBM |  |  |
| 8250SM4880 |  | Re-Submit Design for Barging Point Facilities incl Weighbridges and Cranage for Explosives Unloading | milestone | 0d | 2010-05-15 A | 2010-05-15 A | 8250SM4860 | 100% |  |  |  | 825_7-day w/o holidays | SUBM |  |  |
| 8250SM4900 |  | Engineer Review & Approval on Design for Barging Point Facilities incl Weighbridges and Cranage for Explosives Unloading |  | 6.6d | 2010-05-17 A | 2010-05-25 A | 8250SM4880 | 100% |  |  |  |  | SUBM |  |  |
| 8250SM4940 |  | Submit Design for the Engineer's Site Office | milestone | 0d | 2010-05-31 A | 2010-05-31 A | 8250SM4920 | 100% |  |  |  | 825_7-day w/o holidays | SUBM |  |  |
| 8250SM4960 |  | Engineer Design for the Engineer's Site Office |  | 26.4d | 2010-06-01 A | 2010-06-29 A | 8250SM4940 | 100% | 2010-06-01 | 2010-07-03 |  |  | SUBM |  |  |
| 8250SM5040 |  | Prepare Temporary Traffic Diversion Scheme for Delivery of TBM |  | 19.8d | 2010-06-01 A | 2010-06-22 A | 8250KD00 | 100% | 2010-06-01 | 2010-06-24 |  |  | SUBM |  |  |
| 8250SM5060 |  | Submit Temporary Traffic Diversion Scheme for Delivery of TBM | milestone | 0d | 2010-06-22 A | 2010-06-22 A | 8250SM5040 | 100% |  |  |  | 825_7-day w/o holidays | SUBM |  |  |
| 8250SM5080 |  | Engineer Temporary Traffic Diversion Scheme for Delivery of TBM |  | 26.4d | 2010-06-23 A | 2010-07-21 A | 8250SM5060 | 100% | 2010-06-23 | 2010-07-24 |  |  | SUBM |  |  |
| 8250SM4980 |  | Revise Design for the Engineer's Site Office |  | 13.2d | 2010-06-30 A | 2010-07-14 A | 8250SM4960 | 100% | 2010-06-30 | 2010-07-16 |  |  | SUBM |  |  |
| 8250SM5000 |  | Re-Submit Design for the Engineer's Site Office | milestone | 0d | 2010-07-14 A | 2010-07-14 A | 8250SM4980 | 100% |  |  |  | 825_7-day w/o holidays | SUBM |  |  |
| 8250SM5020 |  | Engineer Review and Approval on Design for the Engineer's Site Office |  | 26.4d | 2010-07-15 A | 2010-08-11 A | 8250SM5000 | 100% | 2010-07-15 | 2010-08-14 |  |  | SUBM |  |  |
| 8250SM5100 |  | Revise Temporary Traffic Diversion Scheme for Delivery of TBM |  | 13.2d | 2010-07-22 A | 2010-08-04 A | 8250SM5080 | 100% | 2010-07-22 | 2010-08-06 |  |  | SUBM |  |  |
| 8250SM5120 |  | Re-Submit Temporary Traffic Diversion Scheme for Delivery of TBM | milestone | 0d | 2010-08-04 A | 2010-08-04 A | 8250SM5100 | 100% |  |  |  | 825_7-day w/o holidays | SUBM |  |  |
| 8250SM5140 |  | Engineer Review and Approval on Temporary Traffic Diversion Scheme for Delivery of TBM |  | 26.4d | 2010-08-05 A | 2010-09-01 A | 8250SM5120 | 100% | 2010-08-05 | 2010-09-04 |  |  | SUBM |  |  |
| 8250SM5160 |  | SLG Process and Approval |  | 105.6d | 2010-09-02 A | 2010-12-28 A | 8250SM5140 | 100% | 2010-09-02 | 2011-01-10 |  |  | SUBM |  |  |

| ID | WBS | Activity | Type | Duration | Start | Finish | Predecessors | Complete | Planned start | Planned finish | Calendar | 825 Phase |
| --- | --- | --- | --- | --- | --- | --- | --- | --- | --- | --- | --- | --- |
|  | 1 | **SCHEDULE AND PROGRAMME** |  |  | 2010-02-01 | 2010-05-04 |  |  |  |  |  |  |
| 8250SM1000 |  | Prepare Preliminary Master Programme |  | 26.4d | 2010-02-01 A | 2010-03-03 A | 8250KD00 | 100% | 2010-02-01 | 2010-03-06 |  | SUBM |
| 8250SM1100 |  | Prepare Time Chainage Programme |  | 13.2d | 2010-02-01 A | 2010-02-17 A | 8250KD00 | 100% | 2010-02-01 | 2010-02-19 |  | SUBM |
| 8250SM2540 |  | Prepare Initial Three Month Rolling Programme |  | 13.2d | 2010-02-01 A | 2010-02-17 A | 8250KD00 | 100% | 2010-02-01 | 2010-02-19 |  | SUBM |
| 8250SM1120 |  | Submit Time Chainage Programme | milestone | 0d | 2010-02-17 A | 2010-02-17 A | 8250SM1100 | 100% |  |  | 825_7-day w/o holidays | SUBM |
| 8250SM2560 |  | Submit Initial Three Month Rolling Programme | milestone | 0d | 2010-02-17 A | 2010-02-17 A | 8250SM2540 | 100% |  |  | 825_7-day w/o holidays | SUBM |
| 8250SM1140 |  | Engineer Review on Time Chainage Programme |  | 26.4d | 2010-02-18 A | 2010-03-17 A | 8250SM1120 | 100% | 2010-02-18 | 2010-03-20 |  | SUBM |
| 8250SM2580 |  | Engineer Review on Initial Three Month Rolling Programme |  | 26.4d | 2010-02-18 A | 2010-03-17 A | 8250SM2560 | 100% | 2010-02-18 | 2010-03-20 |  | SUBM |
| 8250SM1020 |  | Engineer Review on Preliminary Master Programme |  | 26.4d | 2010-03-04 A | 2010-03-31 A | 8250SM1000 | 100% | 2010-03-04 | 2010-04-08 |  | SUBM |
| 8250SM1160 |  | Revise Time Chainage Programme |  | 9.6d | 2010-03-18 A | 2010-03-27 A | 8250SM1140 | 100% | 2010-03-18 | 2010-03-29 |  | SUBM |
| 8250SM2600 |  | Revise Initial Three Month Rolling Programme |  | 13.2d | 2010-03-18 A | 2010-03-31 A | 8250SM2580 | 100% | 2010-03-18 | 2010-04-07 |  | SUBM |
| 8250SM1200 |  | Engineer Review and Approval on Time Chainage Programme |  | 26.4d | 2010-03-27 A | 2010-04-29 A | 8250SM1180 | 100% | 2010-03-27 | 2010-05-04 |  | SUBM |
| 8250SM1180 |  | Re-Submit Time Chainage Programme | milestone | 0d | 2010-03-27 A | 2010-03-27 A | 8250SM1160 | 100% |  |  | 825_7-day w/o holidays | SUBM |
| 8250SM2620 |  | Re-Submit Three Month Rolling Programme as Part of the Monthly Report | milestone | 0d | 2010-03-31 A | 2010-03-31 A | 8250SM2600 | 100% |  |  | 825_7-day w/o holidays | SUBM |
| 8250SM1040 |  | Revise Preliminary Master Programme |  | 13.2d | 2010-04-01 A | 2010-04-19 A | 8250SM1020 | 100% | 2010-04-01 | 2010-04-21 |  | SUBM |
| 8250SM1060 |  | Re-Submit Preliminary Master Programme | milestone | 0d | 2010-04-19 A | 2010-04-19 A | 8250SM1040 FF | 100% |  |  | 825_7-day w/o holidays | SUBM |
| 8250SM1080 |  | Engineer Review and Approval on Preliminary Master Programme |  | 13.2d | 2010-04-20 A | 2010-05-04 A | 8250SM1060 | 100% | 2010-04-20 | 2010-05-06 |  | SUBM |
|  | 2 | **ENVIRONMENTAL** |  |  | 2010-02-01 | 2014-07-11 |  |  |  |  |  |  |
| 8250SM1220 |  | Prepare Environmental Management Plan |  | 24.2d | 2010-02-01 A | 2010-03-01 A | 8250KD00 | 100% | 2010-02-01 | 2010-03-04 |  | SUBM |
| 8250SM2920 |  | Prepare Spoil Disposal Management Plan |  | 26.4d | 2010-02-01 A | 2010-03-03 A | 8250KD00 | 100% | 2010-02-01 | 2010-03-06 |  | SUBM |
| 8250SM1240 |  | Submit Environmental Management Plan | milestone | 0d | 2010-03-01 A | 2010-03-01 A | 8250SM1220 | 100% |  |  | 825_7-day w/o holidays | SUBM |
| 8250SM1260 |  | Engineer Review on Environmental Management Plan |  | 13.2d | 2010-03-02 A | 2010-03-15 A | 8250SM1240 | 100% | 2010-03-02 | 2010-03-17 |  | SUBM |
| 8250SM2940 |  | Submit Spoil Disposal Management Plan | milestone | 0d | 2010-03-03 A | 2010-03-03 A | 8250SM2920 | 100% |  |  | 825_7-day w/o holidays | SUBM |
| 8250SM2960 |  | Engineer Review on Spoil Disposal Management Plan |  | 26.4d | 2010-03-04 A | 2010-03-31 A | 8250SM2940 | 100% | 2010-03-04 | 2010-04-08 |  | SUBM |
| 8250SM1280 |  | Revise Environmental Management Plan |  | 6.6d | 2010-03-16 A | 2010-03-22 A | 8250SM1260 | 100% | 2010-03-16 | 2010-03-23 |  | SUBM |
| 8250SM1300 |  | Re-Submit Environmental Management Plan | milestone | 0d | 2010-03-22 A | 2010-03-22 A | 8250SM1280 | 100% |  |  | 825_7-day w/o holidays | SUBM |
| 8250SM1320 |  | Engineer Review and Approval on Environmental Management Plan |  | 13.2d | 2010-03-23 A | 2010-04-09 A | 8250SM1300 | 100% | 2010-03-23 | 2010-04-12 |  | SUBM |
| 8250SM2980 |  | Revise Spoil Disposal Management Plan |  | 13.2d | 2010-04-01 A | 2010-04-19 A | 8250SM2960 | 100% | 2010-04-01 | 2010-04-21 |  | SUBM |
| 8250SM3000 |  | Re-Submit Spoil Disposal Management Plan | milestone | 0d | 2010-04-19 A | 2010-04-19 A | 8250SM2980 | 100% |  |  | 825_7-day w/o holidays | SUBM |
| 8250SM3020 |  | Engineer Review and Approval on Spoil Disposal Management Plan |  | 26.4d | 2010-04-20 A | 2010-05-19 A | 8250SM3000 | 100% | 2010-04-20 | 2010-05-22 |  | SUBM |
| 8250SM2602 |  | Application and Submission of Construction Noise Permit to EPD |  | 30d | 2014-06-27 A | 2014-07-11 A | 8250KD00 | 100% | 2014-09-01 | 2014-10-08 |  | SUBM |

| ID | WBS | Activity | Type | Duration | Start | Finish | Predecessors | Complete | Planned start | Planned finish | Calendar | 825 Phase |
| --- | --- | --- | --- | --- | --- | --- | --- | --- | --- | --- | --- | --- |
|  | 3 | **QUALITY AND ASSURANCE** |  |  | 2010-02-01 | 2010-07-07 |  |  |  |  |  |  |
| 8250SM1340 |  | Prepare Quality Plan |  | 24.2d | 2010-02-01 A | 2010-03-01 A | 8250KD00 | 100% | 2010-02-01 | 2010-03-04 |  | SUBM |
| 8250SM1360 |  | Submit Quality Plan | milestone | 0d | 2010-03-01 A | 2010-03-01 A | 8250SM1340 | 100% |  |  | 825_7-day w/o holidays | SUBM |
| 8250SM1380 |  | Engineer Review on Quality Plan |  | 26.4d | 2010-03-02 A | 2010-03-29 A | 8250SM1360 | 100% | 2010-03-02 | 2010-04-01 |  | SUBM |
| 8250SM1700 |  | Prepare System Assurance Plan |  | 19.8d | 2010-03-29 A | 2010-04-22 A | 8250SM1640 | 100% | 2010-03-29 | 2010-04-24 |  | SUBM |
| 8250SM1400 |  | Revise Quality Plan |  | 13.2d | 2010-03-30 A | 2010-04-16 A | 8250SM1380 | 100% | 2010-03-30 | 2010-04-19 |  | SUBM |
| 8250SM1420 |  | Re-Submit Quality Plan | milestone | 0d | 2010-04-16 A | 2010-04-16 A | 8250SM1400 | 100% |  |  | 825_7-day w/o holidays | SUBM |
| 8250SM1440 |  | Engineer Review and Approval on Quality Plan |  | 13.2d | 2010-04-17 A | 2010-04-30 A | 8250SM1420 | 100% | 2010-04-17 | 2010-05-04 |  | SUBM |
| 8250SM1720 |  | Submit System Assurance Plan | milestone | 0d | 2010-04-22 A | 2010-04-22 A | 8250SM1700 | 100% |  |  | 825_7-day w/o holidays | SUBM |
| 8250SM1740 |  | Engineer Review on System Assurance Plan |  | 26.4d | 2010-04-23 A | 2010-05-24 A | 8250SM1720 | 100% | 2010-04-23 | 2010-05-26 |  | SUBM |
| 8250SM1760 |  | Revise System Assurance Plan |  | 13.2d | 2010-05-24 A | 2010-06-07 A | 8250SM1740 | 100% | 2010-05-24 | 2010-06-08 |  | SUBM |
| 8250SM1800 |  | Engineer Review and Approval on System Assurance Plan |  | 26.4d | 2010-06-07 A | 2010-07-07 A | 8250SM1780 | 100% | 2010-06-07 | 2010-07-09 |  | SUBM |
| 8250SM1780 |  | Re-Submit System Assurance Plan | milestone | 0d | 2010-06-07 A | 2010-06-07 A | 8250SM1760 | 100% |  |  | 825_7-day w/o holidays | SUBM |
|  | 4 | **HEALTH AND SAFETY** |  |  | 2010-02-01 | 2010-08-11 |  |  |  |  |  |  |
| 8250SM3040 |  | Prepare Monitoring and Emergency Response Plan in Relation Potential Impact on Fishponds due to Ground Water Drawdown |  | 24.2d | 2010-02-01 A | 2010-03-01 A | 8250KD00 | 100% | 2010-02-01 | 2010-03-04 |  | SUBM |
| 8250SM3060 |  | Submit Monitoring and Emergency Response Plan in Relation Potential Impact on Fishponds due to Ground Water Drawdown | milestone | 0d | 2010-03-01 A | 2010-03-01 A | 8250SM3040 | 100% |  |  | 825_7-day w/o holidays | SUBM |
| 8250SM3080 |  | Engineer Review on Monitoring and Emergency Response Plan in Relation Potential Impact on Fishponds due to Ground Water |  | 26.4d | 2010-03-02 A | 2010-03-29 A | 8250SM3060 | 100% | 2010-03-02 | 2010-04-01 |  | SUBM |
| 8250SM1820 |  | Prepare Health and Safety Plan |  | 26.4d | 2010-03-05 A | 2010-04-01 A | 8250KD00 | 100% | 2010-03-05 | 2010-04-09 |  | SUBM |
| 8250SM4200 |  | Prepare Safety Inspection Plan |  | 26.4d | 2010-03-05 A | 2010-04-01 A | 8250KD00 | 100% | 2010-03-05 | 2010-04-09 |  | SUBM |
| 8250SM3100 |  | Revise Monitoring and Emergency Response Plan in Relation Potential Impact on Fishponds due to Ground Water Drawdown |  | 13.2d | 2010-03-30 A | 2010-04-16 A | 8250SM3080 | 100% | 2010-03-30 | 2010-04-19 |  | SUBM |
| 8250SM4320 |  | Prepare Design for Safety and Constructability Plan (DSCP) and Safety Hazard Log |  | 26.4d | 2010-03-30 A | 2010-04-30 A | 8250KD00 | 100% | 2010-03-30 | 2010-05-05 |  | SUBM |
| 8250SM4560 |  | Prepare Method Statement for Flood Prevention and Mitigation Measures |  | 52.5d | 2010-03-30 A | 2010-05-31 A | 8250KD00 | 100% | 2010-03-30 | 2010-06-05 |  | SUBM |
| 8250SM1840 |  | Submit Health and Safety Plan | milestone | 0d | 2010-04-01 A | 2010-04-01 A | 8250SM1820 | 100% |  |  | 825_7-day w/o holidays | SUBM |
| 8250SM4220 |  | Submit Safety Inspection Plan | milestone | 0d | 2010-04-01 A | 2010-04-01 A | 8250SM4200 | 100% |  |  | 825_7-day w/o holidays | SUBM |
| 8250SM1860 |  | Engineer Review on Health and Safety Plan |  | 26.4d | 2010-04-07 A | 2010-05-05 A | 8250SM1840 | 100% | 2010-04-07 | 2010-05-08 |  | SUBM |
| 8250SM4240 |  | Engineer Review on Safety Inspection Plan |  | 26.4d | 2010-04-07 A | 2010-05-05 A | 8250SM4220 | 100% | 2010-04-07 | 2010-05-08 |  | SUBM |
| 8250SM3120 |  | Re-Submit Monitoring and Emergency Response Plan in Relation Potential Impact on Fishponds due to Ground Water drawdown | milestone | 0d | 2010-04-16 A | 2010-04-16 A | 8250SM3100 | 100% |  |  | 825_7-day w/o holidays | SUBM |
| 8250SM3140 |  | Engineer Review and Approval on Monitoring and Emergency Response Plan in Relation Potential Impact on Fishponds due to |  | 26.4d | 2010-04-17 A | 2010-05-15 A | 8250SM3120 | 100% | 2010-04-17 | 2010-05-19 |  | SUBM |
| 8250SM4440 |  | Prepare Emergency Action Plan for Major Incidents and Crisis |  | 26.4d | 2010-04-30 A | 2010-05-31 A | 8250KD00 | 100% | 2010-04-30 | 2010-06-03 |  | SUBM |
| 8250SM4340 |  | Submit Design for Safety and Constructability Plan (DSCP) and Safety Hazard Log | milestone | 0d | 2010-04-30 A | 2010-04-30 A | 8250SM4320 | 100% |  |  | 825_7-day w/o holidays | SUBM |
| 8250SM4360 |  | Engineer Review on Design for Safety and Constructability Plan (DSCP) and Safety Hazard Log |  | 26.4d | 2010-05-03 A | 2010-06-01 A | 8250SM4340 | 100% | 2010-05-03 | 2010-06-03 |  | SUBM |
| 8250SM1880 |  | Revise Health and Safety Plan |  | 13.2d | 2010-05-06 A | 2010-05-20 A | 8250SM1860 | 100% | 2010-05-06 | 2010-05-22 |  | SUBM |
| 8250SM4260 |  | Revise Safety Inspection Plan |  | 13.2d | 2010-05-06 A | 2010-05-20 A | 8250SM4240 | 100% | 2010-05-06 | 2010-05-22 |  | SUBM |
| 8250SM1920 |  | Engineer Review and Approval on Health and Safety Plan |  | 26.4d | 2010-05-20 A | 2010-06-19 A | 8250SM1900 | 100% | 2010-05-20 | 2010-06-22 |  | SUBM |
| 8250SM4300 |  | Engineer Review and Approval on Safety Inspection Plan |  | 26.4d | 2010-05-20 A | 2010-06-19 A | 8250SM4280 | 100% | 2010-05-20 | 2010-06-22 |  | SUBM |
| 8250SM1900 |  | Re-Submit Health and Safety Plan | milestone | 0d | 2010-05-20 A | 2010-05-20 A | 8250SM1880 | 100% |  |  | 825_7-day w/o holidays | SUBM |
| 8250SM4280 |  | Re-Submit Safety Inspection Plan | milestone | 0d | 2010-05-20 A | 2010-05-20 A | 8250SM4260 | 100% |  |  | 825_7-day w/o holidays | SUBM |
| 8250SM4460 |  | Submit Emergency Action Plan for Major Incidents and Crisis | milestone | 0d | 2010-05-31 A | 2010-05-31 A | 8250SM4440 | 100% |  |  | 825_7-day w/o holidays | SUBM |
| 8250SM4580 |  | Submit Method Statement for Flood Prevention and Mitigation Measures | milestone | 0d | 2010-05-31 A | 2010-05-31 A | 8250SM4560 | 100% |  |  | 825_7-day w/o holidays | SUBM |
| 8250SM4380 |  | Revise Design for Safety and Constructability Plan (DSCP) and Safety Hazard Log |  | 13.2d | 2010-06-01 A | 2010-06-15 A | 8250SM4360 | 100% | 2010-06-01 | 2010-06-17 |  | SUBM |
| 8250SM4480 |  | Engineer Review on Emergency Action Plan for Major Incidents and Crisis |  | 26.4d | 2010-06-01 A | 2010-06-29 A | 8250SM4460 | 100% | 2010-06-01 | 2010-07-03 |  | SUBM |
| 8250SM4600 |  | Engineer Review on Method Statement for Flood Prevention and Mitigation Measures |  | 19.8d | 2010-06-01 A | 2010-06-22 A | 8250SM4580 | 100% | 2010-06-01 | 2010-06-24 |  | SUBM |
| 8250SM4420 |  | Engineer Review and Approval on Design for Safety and Constructability Plan (DSCP) and Safety Hazard Log |  | 26.4d | 2010-06-15 A | 2010-07-15 A | 8250SM4400 | 100% | 2010-06-15 | 2010-07-17 |  | SUBM |
| 8250SM4400 |  | Re-Submit Design for Safety and Constructability Plan (DSCP) and Safety Hazard Log | milestone | 0d | 2010-06-15 A | 2010-06-15 A | 8250SM4380 | 100% |  |  | 825_7-day w/o holidays | SUBM |
| 8250SM4620 |  | Revise Method Statement for Flood Prevention and Mitigation Measures |  | 6.6d | 2010-06-23 A | 2010-06-29 A | 8250SM4600 | 100% | 2010-06-23 | 2010-06-30 |  | SUBM |
| 8250SM4640 |  | Re-Submit Method Statement for Flood Prevention and Mitigation Measures | milestone | 0d | 2010-06-29 A | 2010-06-29 A | 8250SM4620 | 100% |  |  | 825_7-day w/o holidays | SUBM |
| 8250SM4500 |  | Revise Emergency Action Plan for Major Incidents and Crisis |  | 13.2d | 2010-06-30 A | 2010-07-14 A | 8250SM4480 | 100% | 2010-06-30 | 2010-07-16 |  | SUBM |
| 8250SM4660 |  | Engineer Review and Approval on Method Statement for Flood Prevention and Mitigation Measures |  | 13.2d | 2010-06-30 A | 2010-07-14 A | 8250SM4640 | 100% | 2010-06-30 | 2010-07-16 |  | SUBM |
| 8250SM4520 |  | Re-Submit Emergency Action Plan for Major Incidents and Crisis | milestone | 0d | 2010-07-14 A | 2010-07-14 A | 8250SM4500 | 100% |  |  | 825_7-day w/o holidays | SUBM |
| 8250SM4540 |  | Engineer Review and Approval on Emergency Action Plan for Major Incidents and Crisis |  | 26.4d | 2010-07-15 A | 2010-08-11 A | 8250SM4520 | 100% | 2010-07-15 | 2010-08-14 |  | SUBM |

| ID | WBS | Activity | Type | Duration | Start | Finish | Predecessors | Complete | Planned start | Planned finish | Calendar | 825 Phase |
| --- | --- | --- | --- | --- | --- | --- | --- | --- | --- | --- | --- | --- |
|  | 5 | **INSTRUMENTATION REPORTS & SURVEY** |  |  | 2010-03-22 | 2013-10-05 |  |  |  |  |  |  |
| 8250SM3280 |  | Prepare Survey Inspection Plan |  | 26.4d | 2010-03-22 A | 2010-04-22 A | 8250KD00 | 100% | 2010-03-22 | 2010-04-26 |  | SUBM |
| 8250SM3400 |  | Prepare Method Statement for Instrumentation Installation |  | 13.2d | 2010-03-26 A | 2010-04-13 A | 8250KD00 | 100% | 2010-03-26 | 2010-04-15 |  | SUBM |
| 8250SM3760 |  | Prepare Pre-Construction Hydrographic Survey in the Vicinity of the Barging Facility |  | 6.6d | 2010-04-10 A | 2010-04-16 A | 8250KD00 | 100% | 2010-04-10 | 2010-04-17 |  | SUBM |
| 8250SM3420 |  | Submit Method Statement for Instrumentation Installation | milestone | 0d | 2010-04-13 A | 2010-04-13 A | 8250SM3400 | 100% |  |  | 825_7-day w/o holidays | SUBM |
| 8250SM3440 |  | Engineer Review on Method Statement for Instrumentation Installation |  | 13.2d | 2010-04-14 A | 2010-04-27 A | 8250SM3420 | 100% | 2010-04-14 | 2010-04-29 |  | SUBM |
| 8250SM3780 |  | Submit Pre-Construction Hydrographic Survey in the Vicinity of the Barging Facility | milestone | 0d | 2010-04-16 A | 2010-04-16 A | 8250SM3760 | 100% |  |  | 825_7-day w/o holidays | SUBM |
| 8250SM3300 |  | Submit Survey Inspection Plan | milestone | 0d | 2010-04-22 A | 2010-04-22 A | 8250SM3280 | 100% |  |  | 825_7-day w/o holidays | SUBM |
| 8250SM3320 |  | Engineer Review on Survey Inspection Plan |  | 26.4d | 2010-04-23 A | 2010-05-24 A | 8250SM3300 | 100% | 2010-04-23 | 2010-05-26 |  | SUBM |
| 8250SM3460 |  | Revise Method Statement for Instrumentation Installation |  | 6.6d | 2010-04-28 A | 2010-05-05 A | 8250SM3440 | 100% | 2010-04-28 | 2010-05-06 |  | SUBM |
| 8250SM3480 |  | Re-Submit Method Statement for Instrumentation Installation | milestone | 0d | 2010-05-05 A | 2010-05-05 A | 8250SM3460 | 100% |  |  | 825_7-day w/o holidays | SUBM |
| 8250SM3500 |  | Engineer Review and Approval on Method Statement for Instrumentation Installation |  | 13.2d | 2010-05-06 A | 2010-05-20 A | 8250SM3480 | 100% | 2010-05-06 | 2010-05-22 |  | SUBM |
| 8250SM3640 |  | Prepare Instrumentation Baseline Monitoring Report |  | 13.2d | 2010-05-20 A | 2010-06-04 A | 8250IN1020 | 100% | 2010-05-20 | 2010-06-05 |  | SUBM |
| 8250SM3340 |  | Revise Survey Inspection Plan |  | 13.2d | 2010-05-24 A | 2010-06-07 A | 8250SM3320 | 100% | 2010-05-24 | 2010-06-08 |  | SUBM |
| 8250SM3680 |  | Engineer Review on Instrumentation Baseline Monitoring Report |  | 13.2d | 2010-06-04 A | 2010-06-19 A | 8250SM3660 | 100% | 2010-06-04 | 2010-06-21 |  | SUBM |
| 8250SM3660 |  | Submit Instrumentation Baseline Monitoring Report | milestone | 0d | 2010-06-04 A | 2010-06-04 A | 8250SM3640 | 100% |  |  | 825_7-day w/o holidays | SUBM |
| 8250SM3380 |  | Engineer Review and Approval on Survey Inspection Plan |  | 26.4d | 2010-06-07 A | 2010-07-07 A | 8250SM3360 | 100% | 2010-06-07 | 2010-07-09 |  | SUBM |
| 8250SM3360 |  | Re-Submit Survey Inspection Plan | milestone | 0d | 2010-06-07 A | 2010-06-07 A | 8250SM3340 | 100% |  |  | 825_7-day w/o holidays | SUBM |
| 8250SM3700 |  | Revise Instrumentation Baseline Monitoring Report |  | 13.2d | 2010-06-19 A | 2010-07-05 A | 8250SM3680 | 100% | 2010-06-19 | 2010-07-06 |  | SUBM |
| 8250SM3520 |  | Prepare Deformation Monitoring Survey Scheme |  | 26.4d | 2010-07-03 A | 2010-07-30 A | 8250KD00 | 100% | 2010-07-03 | 2010-08-03 |  | SUBM |
| 8250SM3740 |  | Engineer Review and Approval on Instrumentation Baseline Monitoring Report |  | 13.2d | 2010-07-05 A | 2010-07-19 A | 8250SM3720 | 100% | 2010-07-05 | 2010-07-20 |  | SUBM |
| 8250SM3720 |  | Re-Submit Instrumentation Baseline Monitoring Report | milestone | 0d | 2010-07-05 A | 2010-07-05 A | 8250SM3700 | 100% |  |  | 825_7-day w/o holidays | SUBM |
| 8250SM3540 |  | Submit Deformation Monitoring Survey Scheme | milestone | 0d | 2010-07-30 A | 2010-07-30 A | 8250SM3520 | 100% |  |  | 825_7-day w/o holidays | SUBM |
| 8250SM3560 |  | Engineer Review on Deformation Monitoring Survey Scheme |  | 26.4d | 2010-07-31 A | 2010-08-27 A | 8250SM3540 | 100% | 2010-07-31 | 2010-08-31 |  | SUBM |
| 8250SM3580 |  | Revise Deformation Monitoring Survey Scheme |  | 19.8d | 2010-08-28 A | 2010-09-17 A | 8250SM3560 | 100% | 2010-08-28 | 2010-09-20 |  | SUBM |
| 8250SM3600 |  | Re-Submit Deformation Monitoring Survey Scheme | milestone | 0d | 2010-09-17 A | 2010-09-17 A | 8250SM3580 | 100% |  |  | 825_7-day w/o holidays | SUBM |
| 8250SM3620 |  | Engineer Review and Approval on Deformation Monitoring Survey Scheme |  | 26.4d | 2010-09-18 A | 2010-10-19 A | 8250SM3600 | 100% | 2010-09-18 | 2010-10-22 |  | SUBM |
| 8250SM4080 |  | Prepare Vibration Monitoring Plan for Tunneling Works |  | 26.4d | 2010-10-02 A | 2010-10-30 A | 8250KD00 | 100% | 2010-10-02 | 2010-11-03 |  | SUBM |
| 8250SM4100 |  | Submit Vibration Monitoring Plan for Tunneling Works | milestone | 0d | 2010-10-30 A | 2010-10-30 A | 8250SM4080 | 100% |  |  | 825_7-day w/o holidays | SUBM |
| 8250SM4120 |  | Engineer Review on Vibration Monitoring Plan for Tunneling Works |  | 26.4d | 2010-11-01 A | 2010-11-27 A | 8250SM4100 | 100% | 2010-11-01 | 2010-12-01 |  | SUBM |
| 8250SM4140 |  | Revise Vibration Monitoring Plan for Tunneling Works |  | 13.2d | 2010-11-29 A | 2010-12-11 A | 8250SM4120 | 100% | 2010-11-29 | 2010-12-14 |  | SUBM |
| 8250SM4160 |  | Re-Submit Vibration Monitoring Plan for Tunneling Works | milestone | 0d | 2010-12-11 A | 2010-12-11 A | 8250SM4140 | 100% |  |  | 825_7-day w/o holidays | SUBM |
| 8250SM4180 |  | Engineer Review and Approval on Vibration Monitoring Plan for Tunneling Works |  | 26.4d | 2010-12-13 A | 2011-01-12 A | 8250SM4160 | 100% | 2010-12-13 | 2011-01-15 |  | SUBM |
| 8250SM3800 |  | Prepare Pre-Handover Hydrographic Survey in the Vicinity of the Barging Facility |  | 6.6d | 2011-03-17 A | 2011-03-23 A | 8250KD00 | 100% | 2015-03-17 | 2015-03-24 |  | SUBM |
| 8250SM3820 |  | Submit Pre-Handover Hydrographic Survey in the Vicinity of the Barging Facility | milestone | 0d | 2011-03-23 A | 2011-03-23 A | 8250SM3800, 8250SM3780 | 100% | 2015-03-23 | 2015-03-23 | 825_7-day w/o holidays | SUBM |
| 8250SM2300 |  | Prepare Instrumentation Monitoring Report 1 |  | 13.2d | 2011-04-18 A | 2011-04-30 A | 8250KD00 | 100% | 2011-03-21 | 2011-04-06 |  | SUBM |
| 8250SM2320 |  | Submit Instrumentation Monitoring Report 1 | milestone | 0d | 2011-04-30 A | 2011-04-30 A | 8250SM2300 | 100% | 2011-04-02 | 2011-04-02 | 825_7-day w/o holidays | SUBM |
| 8250SM2340 |  | Prepare Instrumentation Monitoring Report 2 |  | 13.2d | 2011-09-16 A | 2011-09-29 A | 8250SM2320 | 100% | 2011-09-16 | 2011-10-03 |  | SUBM |
| 8250SM2360 |  | Submit Instrumentation Monitoring Report 2 | milestone | 0d | 2011-09-29 A | 2011-09-29 A | 8250SM2340 | 100% |  |  | 825_7-day w/o holidays | SUBM |
| 8250SM2380 |  | Prepare Instrumentation Monitoring Report 3 |  | 13.2d | 2012-03-17 A | 2012-03-30 A | 8250SM2340 | 100% | 2012-03-17 | 2012-04-02 |  | SUBM |
| 8250SM2400 |  | Submit Instrumentation Monitoring Report 3 | milestone | 0d | 2012-03-30 A | 2012-03-30 A | 8250SM2380 | 100% |  |  | 825_7-day w/o holidays | SUBM |
| 8250SM2420 |  | Prepare Instrumentation Monitoring Report 4 |  | 13.2d | 2012-10-03 A | 2012-10-16 A | 8250SM2400 FS+154d, 8250SM2380 | 100% | 2012-09-20 | 2012-10-08 |  | SUBM |
| 8250SM2440 |  | Submit Instrumentation Monitoring Report 4 | milestone | 0d | 2012-10-16 A | 2012-10-16 A | 8250SM2420 | 100% | 2012-10-31 | 2012-10-31 | 825_7-day w/o holidays | SUBM |
| 8250SM2460 |  | Prepare Instrumentation Monitoring Report 5 |  | 13d | 2013-05-31 A | 2013-06-29 A | 8250SM2420 FS+176d | 100% | 2013-03-25 | 2013-04-11 |  | SUBM |
| 8250SM2480 |  | Submit Instrumentation Monitoring Report 5 | milestone | 0d | 2013-06-29 A | 2013-06-29 A | 8250SM2460 | 100% | 2013-04-05 | 2013-04-05 | 825_7-day w/o holidays | SUBM |
| 8250SM2500 |  | Prepare Instrumentation Monitoring Report 6 |  | 13d | 2013-09-23 A | 2013-10-05 A | 8250SM2460 FS+176d | 100% | 2013-09-13 | 2013-09-28 |  | SUBM |
| 8250SM2520 |  | Submit Instrumentation Monitoring Report 6 | milestone | 0d | 2013-10-05 A | 2013-10-05 A | 8250SM2500 | 100% | 2013-09-24 | 2013-09-24 | 825_7-day w/o holidays | SUBM |

| ID | WBS | Activity | Type | Duration | Start | Finish | Predecessors | Complete | Planned start | Planned finish | Calendar | 825 Phase |
| --- | --- | --- | --- | --- | --- | --- | --- | --- | --- | --- | --- | --- |
|  | 6 | **SUBMISSION SCHEDULE** |  |  | 2010-02-01 | 2010-04-07 |  |  |  |  |  |  |
| 8250SM1580 |  | Prepare Submission Schedule |  | 22d | 2010-02-01 A | 2010-02-26 A | 8250KD00 | 100% | 2010-02-01 | 2010-03-01 |  | SUBM |
| 8250SM1600 |  | Submit Submission Schedule | milestone | 0d | 2010-02-26 A | 2010-02-26 A | 8250SM1580 | 100% |  |  | 825_7-day w/o holidays | SUBM |
| 8250SM1620 |  | Engineer Review on Submission Schedule |  | 13.2d | 2010-02-27 A | 2010-03-12 A | 8250SM1600 | 100% | 2010-02-27 | 2010-03-15 |  | SUBM |
| 8250SM1640 |  | Revise Submission Schedule |  | 6.6d | 2010-03-13 A | 2010-03-19 A | 8250SM1620 | 100% | 2010-03-13 | 2010-03-20 |  | SUBM |
| 8250SM1660 |  | Re-Submit Submission Schedule | milestone | 0d | 2010-03-19 A | 2010-03-19 A | 8250SM1640 | 100% |  |  | 825_7-day w/o holidays | SUBM |
| 8250SM1680 |  | Engineer Review and Approval on Submission Schedule |  | 13.2d | 2010-03-20 A | 2010-04-07 A | 8250SM1660 | 100% | 2010-03-20 | 2010-04-09 |  | SUBM |
|  | 7 | **METHOD OF CONSTRUCTION** |  |  | 2010-02-01 | 2011-03-16 |  |  |  |  |  |  |
| 8250SM1460 |  | Prepare Method of Construction |  | 26.4d | 2010-02-01 A | 2010-03-03 A | 8250KD00 | 100% | 2010-02-01 | 2010-03-06 |  | SUBM |
| 8250SM1480 |  | Submit Method of Construction | milestone | 0d | 2010-03-03 A | 2010-03-03 A | 8250SM1460 | 100% |  |  | 825_7-day w/o holidays | SUBM |
| 8250SM1500 |  | Engineer Review on Method of Construction |  | 26.4d | 2010-03-04 A | 2010-03-31 A | 8250SM1480 | 100% | 2010-03-04 | 2010-04-08 |  | SUBM |
| 8250SM4680 |  | Prepare Design for Excavation & Dewatering Works |  | 19.8d | 2010-03-05 A | 2010-03-25 A | 8250KD00 | 100% | 2010-03-05 | 2010-03-27 |  | SUBM |
| 8250SM4700 |  | Submit Design for Excavation & Dewatering Works | milestone | 0d | 2010-03-25 A | 2010-03-25 A | 8250SM4680 | 100% |  |  | 825_7-day w/o holidays | SUBM |
| 8250SM4720 |  | Engineer Review on Design for Excavation & Dewatering Works |  | 26.4d | 2010-03-26 A | 2010-04-27 A | 8250SM4700 | 100% | 2010-03-26 | 2010-04-30 |  | SUBM |
| 8250SM1520 |  | Revise Method of Construction |  | 13.2d | 2010-04-01 A | 2010-04-19 A | 8250SM1500 | 100% | 2010-04-01 | 2010-04-21 |  | SUBM |
| 8250SM1540 |  | Re-Submit Method of Construction | milestone | 0d | 2010-04-19 A | 2010-04-19 A | 8250SM1520 | 100% |  |  | 825_7-day w/o holidays | SUBM |
| 8250SM1560 |  | Engineer Review and Approval on Method of Construction |  | 13.2d | 2010-04-20 A | 2010-05-04 A | 8250SM1540 | 100% | 2010-04-20 | 2010-05-06 |  | SUBM |
| 8250SM4740 |  | Revise Design for Excavation & Dewatering Works |  | 13.2d | 2010-04-28 A | 2010-05-12 A | 8250SM4720 | 100% | 2010-04-28 | 2010-05-14 |  | SUBM |
| 8250SM4760 |  | Re-Submit Design for Excavation & Dewatering Works | milestone | 0d | 2010-05-12 A | 2010-05-12 A | 8250SM4740 | 100% |  |  | 825_7-day w/o holidays | SUBM |
| 8250SM4780 |  | Engineer Review and Approval on Design for Excavation & Dewatering Works |  | 26.4d | 2010-05-13 A | 2010-06-11 A | 8250SM4760 | 100% | 2010-05-13 | 2010-06-14 |  | SUBM |
| 8250SM5180 |  | Prepare Design for TBM Break-in and Break-out Works |  | 19.8d | 2010-11-01 A | 2010-11-20 A | 8250KD00 | 100% | 2010-11-01 | 2010-11-23 |  | SUBM |
| 8250SM5300 |  | Prepare Design for TBM Face Support Pressures |  | 19.8d | 2010-11-10 A | 2010-11-30 A | 8250KD00 | 100% | 2010-11-10 | 2010-12-02 |  | SUBM |
| 8250SM5420 |  | Prepare Design for Temporary Support to the Bored Tunnels |  | 19.8d | 2010-11-10 A | 2010-11-30 A | 8250KD00 | 100% | 2010-11-10 | 2010-12-02 |  | SUBM |
| 8250SM5200 |  | Submit Design for TBM Break-in and Break-out Works | milestone | 0d | 2010-11-20 A | 2010-11-20 A | 8250SM5180 | 100% |  |  | 825_7-day w/o holidays | SUBM |
| 8250SM5220 |  | Engineer Review on Design for TBM Break-in and Break-out Works |  | 26.4d | 2010-11-22 A | 2010-12-18 A | 8250SM5200 | 100% | 2010-11-22 | 2010-12-22 |  | SUBM |
| 8250SM5320 |  | Submit Design for TBM Face Support Pressures | milestone | 0d | 2010-11-30 A | 2010-11-30 A | 8250SM5300 | 100% |  |  | 825_7-day w/o holidays | SUBM |
| 8250SM5440 |  | Submit Design for Temporary Support to the Bored Tunnels | milestone | 0d | 2010-11-30 A | 2010-11-30 A | 8250SM5420 | 100% |  |  | 825_7-day w/o holidays | SUBM |
| 8250SM3960 |  | Prepare Method Statement for TBM Operation in Relation to Excavation and Lining Erection |  | 26.4d | 2010-12-01 A | 2010-12-30 A | 8250KD00 | 100% | 2010-12-01 | 2011-01-04 |  | SUBM |
| 8250SM5340 |  | Engineer Design for TBM Face Support Pressures |  | 26.4d | 2010-12-01 A | 2010-12-30 A | 8250SM5320 | 100% | 2010-12-01 | 2011-01-04 |  | SUBM |
| 8250SM5460 |  | Engineer Review on Design for Temporary Support to the Bored Tunnels |  | 26.4d | 2010-12-01 A | 2010-12-30 A | 8250SM5440 | 100% | 2010-12-01 | 2011-01-04 |  | SUBM |
| 8250SM5240 |  | Revise Design for TBM Break-in and Break-out Works |  | 13.2d | 2010-12-20 A | 2011-01-05 A | 8250SM5220 | 100% | 2010-12-20 | 2011-01-07 |  | SUBM |
| 8250SM3980 |  | Submit Method Statement for TBM Operation in Relation to Excavation and Lining Erection | milestone | 0d | 2010-12-30 A | 2010-12-30 A | 8250SM3960 | 100% |  |  | 825_7-day w/o holidays | SUBM |
| 8250SM4000 |  | Engineer Review on Method Statement for TBM Operation in Relation to Excavation and Lining Erection |  | 26.4d | 2010-12-31 A | 2011-01-28 A | 8250SM3980 | 100% | 2010-12-31 | 2011-02-01 |  | SUBM |
| 8250SM5360 |  | Revise Design for TBM Face Support Pressures |  | 13.2d | 2010-12-31 A | 2011-01-14 A | 8250SM5340 | 100% | 2010-12-31 | 2011-01-17 |  | SUBM |
| 8250SM5480 |  | Revise Design for Temporary Support to the Bored Tunnels |  | 13.2d | 2010-12-31 A | 2011-01-14 A | 8250SM5460 | 100% | 2010-12-31 | 2011-01-17 |  | SUBM |
| 8250SM5260 |  | Re-Submit Design for TBM Break-in and Break-out Works | milestone | 0d | 2011-01-05 A | 2011-01-05 A | 8250SM5240 | 100% |  |  | 825_7-day w/o holidays | SUBM |
| 8250SM5280 |  | Engineer Review and Approval on Design for TBM Break-in and Break-out Works |  | 26.4d | 2011-01-06 A | 2011-02-02 A | 8250SM5260 | 100% | 2011-01-06 | 2011-02-09 |  | SUBM |
| 8250SM5380 |  | Re-Submit Design for TBM Face Support Pressures | milestone | 0d | 2011-01-14 A | 2011-01-14 A | 8250SM5360 | 100% |  |  | 825_7-day w/o holidays | SUBM |
| 8250SM5500 |  | Re-Submit Design for Temporary Support to the Bored Tunnels | milestone | 0d | 2011-01-14 A | 2011-01-14 A | 8250SM5480 | 100% |  |  | 825_7-day w/o holidays | SUBM |
| 8250SM5400 |  | Engineer Review and Approval on Design for TBM Face Support Pressures |  | 26.4d | 2011-01-15 A | 2011-02-15 A | 8250SM5380 | 100% | 2011-01-15 | 2011-02-18 |  | SUBM |
| 8250SM5520 |  | Engineer Review and Approval on Design for Temporary Support to the Bored Tunnels |  | 26.4d | 2011-01-15 A | 2011-02-15 A | 8250SM5500 | 100% | 2011-01-15 | 2011-02-18 |  | SUBM |
| 8250SM4020 |  | Revise Method Statement for TBM Operation in Relation to Excavation and Lining Erection |  | 13.2d | 2011-01-29 A | 2011-02-15 A | 8250SM4000 | 100% | 2011-01-29 | 2011-02-17 |  | SUBM |
| 8250SM4040 |  | Re-Submit Method Statement for TBM Operation in Relation to Excavation and Lining Erection | milestone | 0d | 2011-02-15 A | 2011-02-15 A | 8250SM4020 | 100% |  |  | 825_7-day w/o holidays | SUBM |
| 8250SM4060 |  | Engineer Review and Approval on Method Statement for TBM Operation in Relation to Excavation and Lining Erection |  | 26.4d | 2011-02-16 A | 2011-03-16 A | 8250SM4040 | 100% | 2011-02-16 | 2011-03-19 |  | SUBM |

| ID | WBS | Activity | Type | Duration | Start | Finish | Predecessors | Complete | Planned start | Planned finish | Total float | Free float | Calendar | 825 Phase |
| --- | --- | --- | --- | --- | --- | --- | --- | --- | --- | --- | --- | --- | --- | --- |
|  | 8 | **INTERFACE SPECIFICATIONS** |  |  | 2011-02-17 | 2011-07-02 |  |  |  |  |  |  |  |  |
| 8250SM1940 |  | Prepare Detailed Interface Specifications with Designated Contractors |  | 39.6d | 2011-02-17 A | 2011-03-31 A | 8250KD00 | 100% | 2011-02-17 | 2011-04-06 |  |  |  | SUBM |
| 8250SM1960 |  | Submit Detailed Interface Specifications with Designated Contractors | milestone | 0d | 2011-03-31 A | 2011-03-31 A | 8250SM1940 | 100% |  |  |  |  | 825_7-day w/o holidays | SUBM |
| 8250SM1980 |  | Engineer Review on Detailed Interface Specifications with Designated Contractors |  | 26.4d | 2011-04-01 A | 2011-05-04 A | 8250SM1960 | 100% | 2011-04-01 | 2011-05-07 |  |  |  | SUBM |
| 8250SM2000 |  | Revise Detailed Interface Specifications with Designated Contractors |  | 26.4d | 2011-05-05 A | 2011-06-02 A | 8250SM1980 | 100% | 2011-05-05 | 2011-06-07 |  |  |  | SUBM |
| 8250SM2020 |  | Re-Submit Detailed Interface Specifications with Designated Contractors | milestone | 0d | 2011-06-02 A | 2011-06-02 A | 8250SM2000 | 100% |  |  |  |  | 825_7-day w/o holidays | SUBM |
| 8250SM2040 |  | Engineer Review and approval on Detailed Interface Specifications with Designated Contractors |  | 26.4d | 2011-06-03 A | 2011-07-02 A | 8250SM2020 | 100% | 2011-06-03 | 2011-07-06 |  |  |  | SUBM |
|  | 9 | **O & M MANUAL** |  |  | 2015-07-26 | 2017-08-12 |  |  |  |  |  |  |  |  |
| 8250SM2060 |  | Prepare O & M Manuals for Whole of the Works | level of effort | 150d | 2015-07-26 A | 2016-12-01 A | 8250SM2062 SS | 100% | 2016-06-30 | 2016-12-28 |  |  |  | SUBM |
| 8250SM2062 |  | Prepare O & M Manuals for Whole of the Works - Phase 1 (Part 1) |  | 60d | 2015-07-26 A | 2016-09-30 A | 8250VB1800, 8250VB1724, 8250VB1780, 8250CC7440, 8250CC7430 | 100% | 2016-06-30 | 2016-09-08 |  |  |  | SUBM |
| 8250SM2062-100 |  | Prepare O & M Manuals for Whole of the Works - Phase 1 (Part 2) |  | 30d | 2015-07-26 A | 2016-09-30 A | 8250SM2062 | 100% | 2016-09-09 | 2016-10-17 |  |  |  | SUBM |
| 8250SM2064 |  | Prepare O & M Manuals for Whole of the Works - Phase 2 (Part 1) |  | 30d | 2015-12-31 A | 2016-12-31 A | 8250SM2062 | 100% | 2016-09-09 | 2016-10-17 |  |  |  | SUBM |
| 8250SM2064-100 |  | Prepare O & M Manuals for Whole of the Works - Phase 2 (Part 2) |  | 60d | 2015-12-31 A | 2017-03-31 A | 8250SM2064 | 100% | 2016-10-18 | 2016-12-28 |  |  |  | SUBM |
| 8250SM2120 |  | Revise O & M Manuals for Whole of the Works |  | 14d | 2017-04-10 A | 2017-05-31 A | 8250SM2100, 8250EW3110 FF+18d | 100% | 2017-07-07 | 2017-07-22 |  |  |  | SUBM |
| 8250SM2100 |  | Engineer Review on O & M Manuals for Whole of the Works |  | 28d | 2017-05-17 A | 2017-05-17 A | 8250SM2080 | 100% | 2017-05-31 | 2017-07-03 |  |  |  | SUBM |
| 8250SM2080 |  | Submit O & M Manuals for Whole of the Works | milestone | 0d | 2017-07-31 | 2017-07-31 | 8250SM2064, 8250SM2062-100, 8250SM2060 FF, 8250SM2064-100 |  |  |  | 351d | 0d | 825_7-day w/o holidays | SUBM |
| 8250SM2140 |  | Re-Submit O & M Manuals for Whole of the Works | milestone | 0d | 2017-07-31 | 2017-07-31 | 8250SM2120 |  |  |  | 351d | 0d | 825_7-day w/o holidays | SUBM |
| 8250SM2160 |  | Engineer Review and Approval on O & M Manuals for Whole of the Works |  | 12d | 2017-07-31 | 2017-08-12 | 8250SM2140 |  |  |  | 296d | 0d |  | SUBM |
|  | 10 | **AS-BUILT DRAWINGS** |  |  | 2015-07-27 | 2017-07-31 |  |  |  |  |  |  |  |  |
| 8250SM2182 |  | Prepare As-Built Drawings for Whole of the Works - Phase 1 (Part 1) |  | 80d | 2015-07-27 A | 2015-10-30 A | 8250CC10040, 8250CC10050, 8250NB1380, 8250NB1280, 8250CP1210, 8250NB1320, 8250GT1700, 8250CP1270, 8250CP1490, 8250CP1415, 8250NB1300, 8250NB1340, 8250NB1360, 8250GT1780, 8250CC10970, 8250CC10070, 8250CC10080, 8250CP1330, 8250CP1385 | 100% |  |  |  |  |  | SUBM |
| 8250SM2184 |  | Prepare As-Built Drawings for Whole of the Works - Phase 2 (Part 1) |  | 50d | 2015-08-01 A | 2015-12-31 A | 8250SM2182 | 100% | 2016-06-30 | 2016-08-27 |  |  |  | SUBM |
| 8250SM2180 |  | Prepare As-Built Drawings for Whole of the Works | milestone | 0d | 2015-10-30 A | 2015-10-30 A | 8250SM2182 FF | 100% | 2015-10-31 | 2015-10-31 |  |  |  | SUBM |
| 8250SM2184-100 |  | Prepare As-Built Drawings for Whole of the Works - Phase 2 (Part 2) |  | 50d | 2015-11-01 A | 2016-02-29 A | 8250SM2184 | 100% | 2016-08-29 | 2016-10-28 |  |  |  | SUBM |
| 8250SM2184-200 |  | Prepare As-Built Drawings for Whole of the Works - Phase 2 (Part 3) |  | 50d | 2016-01-01 A | 2017-01-31 A | 8250SM2184, 8250SM2184-100 | 100% | 2016-10-29 | 2016-12-28 |  |  |  | SUBM |
| 8250SM2220 |  | Engineer Review on As-Built Drawings for Whole of the Works |  | 30d | 2017-01-01 A | 2017-01-31 A | 8250SM2200 | 100% | 2017-03-31 | 2017-05-11 |  |  |  | SUBM |
| 8250SM2240 |  | Revise As-Built Drawings for Whole of the Works |  | 60d | 2017-02-01 A | 2017-03-15 A | 8250SM2220, 8250EW3110 FF+18d | 100% | 2017-05-12 | 2017-07-22 |  |  |  | SUBM |
| 8250SM2260 |  | Re-Submit As-Built Drawings for Whole of the Works | milestone | 0d | 2017-02-01 A | 2017-02-01 A | 8250SM2240 | 100% | 2017-07-22 | 2017-07-22 |  |  | 825_7-day w/o holidays | SUBM |
| 8250SM2280 |  | Engineer Review and Approval on As-Built Drawings for Whole of the Works |  | 12d | 2017-02-02 A | 2017-02-28 A | 8250SM2260 | 100% | 2017-07-24 | 2017-08-05 |  |  |  | SUBM |
| 8250SM2200 |  | Submit As-Built Drawings for Whole of the Works | milestone | 0d | 2017-07-31 | 2017-07-31 | 8250SM2184, 8250SM2184-100, 8250SM2184-200 |  |  |  | 365d | 0d | 825_7-day w/o holidays | SUBM |

| ID | WBS | Activity | Type | Duration | Start | Finish | Predecessors | Complete | Planned start | Planned finish | Calendar | 825 Phase | 825 Sub-location |
| --- | --- | --- | --- | --- | --- | --- | --- | --- | --- | --- | --- | --- | --- |
|  | 3 | **DESIGN AND APPROVAL** |  |  | 2010-03-02 | 2014-01-17 |  |  |  |  |  |  |  |
|  | 6 | **GENERAL** |  |  | 2010-06-09 | 2011-01-17 |  |  |  |  |  |  |  |
| 8250DA2280 |  | Prepare AIP for Impact Assessment of Open Excavation before Completion of Diaphragm Walls |  | 19.8d | 2010-06-09 A | 2010-06-30 A | 8250KD00 | 100% | 2010-06-09 | 2010-07-03 |  | DEAP |  |
| 8250DA2300 |  | Submit AIP for Impact Assessment of Open Excavation before Completion of Diaphragm Wall with ICE Certificate | milestone | 0d | 2010-06-30 A | 2010-06-30 A | 8250DA2280 | 100% |  |  | 825_7-day w/o holidays | DEAP |  |
| 8250DA2320 |  | Engineer & BD Review on AIP for Impact Assessment of Open Excavation before Completion of Diaphragm Wall |  | 11d | 2010-07-02 A | 2010-07-13 A | 8250DA2300 | 100% | 2010-07-02 | 2010-07-14 |  | DEAP |  |
| 8250DA2340 |  | Revise AIP for Impact Assessment of Open Excavation before Completion of Diaphragm Walls |  | 6.6d | 2010-07-14 A | 2010-07-20 A | 8250DA2320 | 100% | 2010-07-14 | 2010-07-21 |  | DEAP |  |
| 8250DA2400 |  | Prepare DDA for Impact Assessment of Open Excavation before Completion of Diaphragm Walls |  | 6.6d | 2010-07-15 A | 2010-07-20 A | 8250DA2320 | 100% | 2012-05-31 | 2012-06-07 |  | DEAP |  |
| 8250DA2360 |  | Re-Submit AIP for Impact Assessment of Open Excavation before Completion of Diaphragm Wall with ICE Certificate | milestone | 0d | 2010-07-20 A | 2010-07-20 A | 8250DA2340 | 100% |  |  | 825_7-day w/o holidays | DEAP |  |
| 8250DA2420 |  | Submit DDA for Impact Assessment of Open Excavation before Completion of Diaphragm Wall with ICE Certificate | milestone | 0d | 2010-07-20 A | 2010-07-20 A | 8250DA2400 | 100% |  |  | 825_7-day w/o holidays | DEAP |  |
| 8250DA2380 |  | Engineer & BD Review and Approval on AIP for Impact Assessment of Open Excavation before Completion of Diaphragm Walls |  | 6.6d | 2010-07-21 A | 2010-07-27 A | 8250DA2360 | 100% | 2010-07-21 | 2010-07-28 |  | DEAP |  |
| 8250DA2440 |  | Engineer & BD Review on DDA for Impact Assessment of Open Excavation before Completion of Diaphragm Wall |  | 6.6d | 2010-07-21 A | 2010-07-27 A | 8250DA2420 | 100% | 2010-07-21 | 2010-07-28 |  | DEAP |  |
| 8250DA2460 |  | Revise DDA for Impact Assessment of Open Excavation before Completion of Diaphragm Walls |  | 6.6d | 2010-07-28 A | 2010-08-03 A | 8250DA2440 | 100% | 2010-07-28 | 2010-08-04 |  | DEAP |  |
| 8250DA2480 |  | Re-Submit DDA for Impact Assessment of Open Excavation before Completion of Diaphragm Wall with ICE Certificate | milestone | 0d | 2010-08-03 A | 2010-08-03 A | 8250DA2460 | 100% |  |  | 825_7-day w/o holidays | DEAP |  |
| 8250DA2500 |  | Engineer & BD Review and Approval on DDA for Impact Assessment of Open Excavation before Completion of Diaphragm Wall |  | 13.2d | 2010-08-04 A | 2010-08-17 A | 8250DA2480 | 100% | 2010-08-04 | 2010-08-19 |  | DEAP |  |
| 8250DA1240 |  | SLG Process |  | 118.8d | 2010-08-09 A | 2010-12-16 A | 8250DA1220 | 100% | 2010-08-09 | 2010-12-31 |  | DEAP |  |
| 8250DA1245 |  | Excavation Permit |  | 26.4d | 2010-12-16 A | 2011-01-17 A | 8250DA1240 | 100% | 2010-12-16 | 2011-01-19 |  | DEAP |  |
|  | 1 | **825/ 824 STUD TUNNEL JOINT DESIGN** |  |  | 2013-08-01 | 2014-01-17 |  |  |  |  |  |  |  |
| 8250DA4100 |  | Stud Tunnel/Tunnel Joint Design at 825/824 - Design & Submission | level of effort | 43.2d | 2013-08-01 A | 2013-08-30 A | 8250KD00 | 100% | 2013-10-02 | 2013-11-22 |  | DEAP | INTDES |
| 8250DA4000 |  | Stud Tunnel/Tunnel Joint Design at 825/824 | level of effort | 43.2d | 2013-09-02 A | 2014-01-17 A | 8250DA4110 SS | 100% | 2013-10-02 | 2013-11-22 |  | DEAP | INTDES |
| 8250DA4110 |  | Temporary Design Brief |  | 1d | 2013-09-02 A | 2013-09-30 A | 8250DA4100 | 100% | 2013-10-02 | 2013-10-02 |  | DEAP | INTDES |
| 8250DA4120 |  | Temporary Works Design |  | 14d | 2013-10-01 A | 2013-10-12 A | 8250DA4110 | 100% | 2013-10-03 | 2013-10-19 |  | DEAP | INTDES |
| 8250DA4130 |  | ICE Check and Review |  | 7d | 2013-10-14 A | 2013-10-18 A | 8250DA4120 | 100% | 2013-10-21 | 2013-10-28 |  | DEAP | INTDES |
| 8250DA4140 |  | MTR Check and Comments |  | 14d | 2013-10-19 A | 2013-10-31 A | 8250DA4130 | 100% | 2013-10-29 | 2013-11-13 |  | DEAP | INTDES |
| 8250DA4150 |  | Incorporate MTR Comments and Re-Submission |  | 6d | 2013-11-01 A | 2013-11-15 A | 8250DA4140 | 100% | 2013-11-14 | 2013-11-20 |  | DEAP | INTDES |
| 8250DA4200 |  | Stud Tunnel/Tunnel Joint Design at 825/824 - Method Statement | level of effort | 38d | 2013-11-18 A | 2014-01-17 A | 8250DA4210 SS | 100% | 2013-10-02 | 2013-11-15 |  | DEAP | INTDES |
| 8250DA4210 |  | Preparation and Submission of Method Statement |  | 14d | 2013-11-18 A | 2013-11-29 A | 8250DA4110 SS | 100% | 2013-10-02 | 2013-10-18 |  | DEAP | INTDES |
| 8250DA4220 |  | MTR Check and Comments |  | 14d | 2013-11-18 A | 2013-11-29 A | 8250DA4210 | 100% | 2014-07-31 | 2014-08-15 |  | DEAP | INTDES |
| 8250DA4160 |  | MTR Approval |  | 4d | 2013-11-29 A | 2013-11-30 A | 8250DA4150, 8250DA4100 FF, 8250DA4000 FF | 100% | 2013-11-21 | 2013-11-25 |  | DEAP | INTDES |
| 8250DA4230 |  | Incorporate MTR Comments and Re-Submission |  | 7d | 2013-12-02 A | 2013-12-07 A | 8250DA4220, 8250DA4160 | 100% | 2013-11-05 | 2013-11-12 |  | DEAP | INTDES |
| 8250DA4240 |  | MTR Approval |  | 3d | 2013-12-09 A | 2014-01-17 A | 8250DA4200 FF, 8250DA4000 FF, 8250DA4230 | 100% | 2013-11-13 | 2013-11-15 |  | DEAP | INTDES |

| ID | WBS | Activity | Type | Duration | Start | Finish | Predecessors | Complete | Planned start | Planned finish | Calendar | 825 Phase |
| --- | --- | --- | --- | --- | --- | --- | --- | --- | --- | --- | --- | --- |
|  | 2 | **TTMS** |  |  | 2010-04-14 | 2010-08-09 |  |  |  |  |  |  |
| 8250DA1000 |  | Prepare AIP for TTM Schemes for Ground Treament Works at the Footbridge |  | 19.8d | 2010-04-14 A | 2010-05-05 A | 8250KD00 | 100% | 2010-04-14 | 2010-05-07 |  | DEAP |
| 8250DA1020 |  | Submit AIP for TTM Schemes for Ground Treament Works at the Footbridge with ICE Certificate | milestone | 0d | 2010-05-05 A | 2010-05-05 A | 8250DA1000 | 100% |  |  | 825_7-day w/o holidays | DEAP |
| 8250DA1040 |  | Engineer Review on AIP for TTM Schemes for Ground Treament Works at the Footbridge |  | 13.2d | 2010-05-06 A | 2010-05-20 A | 8250DA1020 | 100% | 2010-05-06 | 2010-05-22 |  | DEAP |
| 8250DA1060 |  | Revise AIP for TTM Schemes for Ground Treament Works at the Footbridge |  | 13.2d | 2010-05-20 A | 2010-06-04 A | 8250DA1040 | 100% | 2010-05-20 | 2010-06-05 |  | DEAP |
| 8250DA1120 |  | Prepare DDA for TTM Schemes and Excavation Permit Application for Ground Treament Works at the Footbridge |  | 26.4d | 2010-05-20 A | 2010-06-19 A | 8250DA1040 | 100% | 2010-05-20 | 2010-06-22 |  | DEAP |
| 8250DA1100 |  | Engineer Review and Approval on AIP for TTM Schemes for Ground Treament Works at the Footbridge |  | 26.4d | 2010-06-04 A | 2010-07-05 A | 8250DA1080 | 100% | 2010-06-04 | 2010-07-07 |  | DEAP |
| 8250DA1080 |  | Re-Submit AIP for TTM Schemes for Ground Treament Works at the Footbridge with ICE Certificate | milestone | 0d | 2010-06-04 A | 2010-06-04 A | 8250DA1060 | 100% |  |  | 825_7-day w/o holidays | DEAP |
| 8250DA1160 |  | Engineer Review on DDA for TTM Schemes and Excavation Permit Application for Ground Treament Works at the Footbridge |  | 13.2d | 2010-06-19 A | 2010-07-05 A | 8250DA1140 | 100% | 2010-06-19 | 2010-07-06 |  | DEAP |
| 8250DA1140 |  | Submit DDA for TTM Schemes & Excavation Permit App for Ground Treament Works at the Footbridge with ICE Cert | milestone | 0d | 2010-06-19 A | 2010-06-19 A | 8250DA1120 | 100% |  |  | 825_7-day w/o holidays | DEAP |
| 8250DA1180 |  | Revise DDA for TTM Schemes and Excavation Permit Application for Ground Treament Works at the Footbridge |  | 19.8d | 2010-07-05 A | 2010-07-26 A | 8250DA1160 | 100% | 2010-07-05 | 2010-07-28 |  | DEAP |
| 8250DA1220 |  | Engineer Review & Approval on DDA for TTM Schemes & Excavation Permit App for Ground Treament Works at the Footbridge |  | 13.2d | 2010-07-26 A | 2010-08-09 A | 8250DA1200 | 100% | 2010-07-26 | 2010-08-10 |  | DEAP |
| 8250DA1200 |  | Re-Submit DDA for TTM Schemes & Excavation Permit App for Ground Treament Works at the Footbridge with ICE Certificate | milestone | 0d | 2010-07-26 A | 2010-07-26 A | 8250DA1180 | 100% |  |  | 825_7-day w/o holidays | DEAP |
|  | 3 | **DIAPHRAGM WALLS** |  |  | 2010-03-06 | 2010-05-22 |  |  |  |  |  |  |
| 8250DA1260 |  | Prepare AIP for Design of DW & ELS |  | 13.2d | 2010-03-06 A | 2010-03-19 A | 8250KD00 | 100% | 2010-03-06 | 2010-03-22 |  | DEAP |
| 8250DA1380 |  | Prepare DDA for Design of DW & ELS |  | 13.2d | 2010-03-12 A | 2010-03-25 A | 8250DA1260 SS+5.5d | 100% | 2010-03-12 | 2010-03-27 |  | DEAP |
| 8250DA1280 |  | Submit AIP for Design of DW & ELS with ICE Certificate | milestone | 0d | 2010-03-19 A | 2010-03-19 A | 8250DA1260 | 100% |  |  | 825_7-day w/o holidays | DEAP |
| 8250DA1300 |  | Engineer Review on AIP for Design of DW & ELS |  | 13.2d | 2010-03-20 A | 2010-04-07 A | 8250DA1280 | 100% | 2010-03-20 | 2010-04-09 |  | DEAP |
| 8250DA1400 |  | Submit DDA for Design of DW & ELS with ICE Certificate | milestone | 0d | 2010-03-25 A | 2010-03-25 A | 8250DA1380 | 100% |  |  | 825_7-day w/o holidays | DEAP |
| 8250DA1420 |  | Engineer Review on DDA of Design for DW & ELS |  | 13.2d | 2010-03-26 A | 2010-04-13 A | 8250DA1400 | 100% | 2010-03-26 | 2010-04-15 |  | DEAP |
| 8250DA1320 |  | Revise AIP for Design of DW & ELS |  | 13.2d | 2010-04-08 A | 2010-04-21 A | 8250DA1300 | 100% | 2010-04-08 | 2010-04-23 |  | DEAP |
| 8250DA1440 |  | Revise DDA for Design of DW & ELS |  | 13.2d | 2010-04-14 A | 2010-04-27 A | 8250DA1420 | 100% | 2010-04-14 | 2010-04-29 |  | DEAP |
| 8250DA1340 |  | Re-Submit AIP for Design of DW & ELS with ICE Certificate | milestone | 0d | 2010-04-21 A | 2010-04-21 A | 8250DA1320 | 100% |  |  | 825_7-day w/o holidays | DEAP |
| 8250DA1360 |  | Engineer Review and Approval on AIP for Design of DW & ELS |  | 26.4d | 2010-04-22 A | 2010-05-22 A | 8250DA1340 | 100% | 2010-04-22 | 2010-05-25 |  | DEAP |
| 8250DA1460 |  | Re-Submit DDA for Design of DW & ELS with ICE Certificate | milestone | 0d | 2010-04-27 A | 2010-04-27 A | 8250DA1440 | 100% |  |  | 825_7-day w/o holidays | DEAP |
| 8250DA1480 |  | Engineer Review and Approval on DDA for Design of DW & ELS |  | 13.2d | 2010-04-28 A | 2010-05-12 A | 8250DA1460 | 100% | 2010-04-28 | 2010-05-14 |  | DEAP |

| ID | WBS | Activity | Type | Duration | Start | Finish | Predecessors | Complete | Planned start | Planned finish | Calendar | 825 Phase |
| --- | --- | --- | --- | --- | --- | --- | --- | --- | --- | --- | --- | --- |
|  | 4 | **TBM LININGS** |  |  | 2010-03-02 | 2010-06-23 |  |  |  |  |  |  |
| 8250DA1500 |  | Prepare AIP for Design of Permanent & Temporary Linings of the Bored Tunnels |  | 19.8d | 2010-03-02 A | 2010-03-22 A | 8250KD00 | 100% | 2010-03-02 | 2010-03-24 |  | DEAP |
| 8250DA1520 |  | Submit AIP for Design of Permanent & Temporary Linings of the Bored Tunnels with ICE Certificate | milestone | 0d | 2010-03-22 A | 2010-03-22 A | 8250DA1500 | 100% |  |  | 825_7-day w/o holidays | DEAP |
| 8250DA1540 |  | Engineer Review on AIP for Design of Permanent & Temporary Linings of the Bored Tunnels |  | 13.2d | 2010-03-23 A | 2010-04-09 A | 8250DA1520 | 100% | 2010-03-23 | 2010-04-12 |  | DEAP |
| 8250DA1560 |  | Revise AIP for Design of Permanent & Temporary Linings of the Bored Tunnels |  | 19.8d | 2010-04-10 A | 2010-04-30 A | 8250DA1540 | 100% | 2010-04-10 | 2010-05-04 |  | DEAP |
| 8250DA1620 |  | Prepare DDA for Design of Permanent & Temporary Linings of the Bored Tunnels |  | 26.4d | 2010-04-10 A | 2010-05-08 A | 8250DA1540 | 100% | 2010-04-10 | 2010-05-12 |  | DEAP |
| 8250DA1580 |  | Re-Submit AIP for Design of Permanent & Temporary Linings of the Bored Tunnels with ICE certificate | milestone | 0d | 2010-04-30 A | 2010-04-30 A | 8250DA1560 | 100% |  |  | 825_7-day w/o holidays | DEAP |
| 8250DA1600 |  | Engineer Review and Approval on AIP for Design of Permanent & Temporary Linings of the Bored Tunnels |  | 26.4d | 2010-05-03 A | 2010-06-01 A | 8250DA1580 | 100% | 2010-05-03 | 2010-06-03 |  | DEAP |
| 8250DA1640 |  | Submit DDA for Design of Permanent & Temporary Linings of the Bored Tunnels with ICE Certificate | milestone | 0d | 2010-05-08 A | 2010-05-08 A | 8250DA1620 | 100% |  |  | 825_7-day w/o holidays | DEAP |
| 8250DA1660 |  | Engineer Review on DDA for Design of Permanent & Temporary Linings of the Bored Tunnels |  | 19.8d | 2010-05-10 A | 2010-06-01 A | 8250DA1640 | 100% | 2010-05-10 | 2010-06-02 |  | DEAP |
| 8250DA1680 |  | Revise DDA for Design of Permanent & Temporary Linings of the Bored Tunnels |  | 6.6d | 2010-06-01 A | 2010-06-08 A | 8250DA1660 | 100% |  |  |  | DEAP |
| 8250DA1720 |  | Engineer Review and Approval on DDA for Design of Permanent & Temporary Linings of the Bored Tunnels |  | 13.2d | 2010-06-08 A | 2010-06-23 A | 8250DA1700 | 100% | 2010-06-08 | 2010-06-24 |  | DEAP |
| 8250DA1700 |  | Re-Submit DDA for Design of Permanent & Temporary Linings of the Bored Tunnels with ICE Certificate | milestone | 0d | 2010-06-08 A | 2010-06-08 A | 8250DA1680 | 100% |  |  | 825_7-day w/o holidays | DEAP |
|  | 5 | **CROSS PASSAGES** |  |  | 2011-09-02 | 2013-09-19 |  |  |  |  |  |  |
| 8250DA1850 |  | Prepare DDA for Design for Ground Treament Works at CP15 |  | 13.2d | 2011-09-02 A | 2011-09-14 A | 8250KD00 | 100% | 2012-07-31 | 2012-08-15 |  | DEAP |
| 8250DA1852 |  | Submit DDA for Design for Ground Treament Works at CP15 | milestone | 0d | 2011-09-15 A | 2011-09-15 A | 8250DA1850 | 100% | 2012-08-13 | 2012-08-13 | 825_7-day w/o holidays | DEAP |
| 8250DA1854 |  | Engineer Review on DDA for Ground Treament Works at CP15 |  | 13.2d | 2011-09-16 A | 2011-10-04 A | 8250DA1852 | 100% | 2012-08-14 | 2012-08-29 |  | DEAP |
| 8250DA1856 |  | Revise DDA for Design for Ground Treament Works at CP15 |  | 13.2d | 2011-10-05 A | 2012-05-30 A | 8250DA1854 | 100% | 2012-08-28 | 2012-09-12 |  | DEAP |
| 8250DA1740 |  | Prepare AIP for Design of Cross Passages & Ground Treatment Works from within the Tunnel |  | 19.8d | 2011-11-01 A | 2011-11-23 A | 8250KD00 | 100% | 2011-12-31 | 2012-01-27 |  | DEAP |
| 8250DA1780 |  | Engineer Review on AIP for Design of Cross Passages & Groundrd Treatment Works from within the Tunnel |  | 26.4d | 2011-11-23 A | 2012-01-13 A | 8250DA1760 | 100% | 2012-01-26 | 2012-02-25 |  | DEAP |
| 8250DA1760 |  | Submit AIP for Design of Cross Passages & Ground Treatment Works from within the Tunnel with ICE Certifcate | milestone | 0d | 2011-11-23 A | 2011-11-23 A | 8250DA1740 | 100% | 2012-01-21 | 2012-01-21 | 825_7-day w/o holidays | DEAP |
| 8250DA1800 |  | Revise AIP for Design of Cross Passages & Ground Treatment Works from within the Tunnel |  | 13.2d | 2012-02-23 A | 2012-11-13 A | 8250DA1780 | 100% | 2012-02-23 | 2012-03-09 |  | DEAP |
| 8250DA1857 |  | Re-Submit DDA for Design for Ground Treament Works at CP15 with ICE Certificate | milestone | 0d | 2012-05-31 A | 2012-05-31 A | 8250DA1856 | 100% | 2012-09-10 | 2012-09-10 | 825_7-day w/o holidays | DEAP |
| 8250DA1860 |  | Prepare DDA for Design of Cross Passages & Ground Treatment Works from within the Tunnel |  | 26.4d | 2012-10-03 A | 2013-02-15 A | 8250DA1780 | 100% | 2012-08-31 | 2012-10-03 |  | DEAP |
| 8250DA1820 |  | Re-Submit AIP for Design of Cross Passages & Ground Treatment Works from within the Tunnel with ICE Certificate | milestone | 0d | 2012-11-13 A | 2012-11-13 A | 8250DA1800 | 100% | 2013-01-31 | 2013-01-31 | 825_7-day w/o holidays | DEAP |
| 8250DA1840 |  | Engineer Review & Approval on AIP for Design of Cross Passages & Ground Treatment Works from within the Tunnel |  | 26.4d | 2013-01-31 A | 2013-02-27 A | 8250DA1820 | 100% | 2013-02-28 | 2013-04-02 |  | DEAP |
| 8250DA1880 |  | Submit DDA for Design of Cross Passages & Ground Treatment Works from within the Tunnel with ICE Certificate | milestone | 0d | 2013-02-15 A | 2013-02-15 A | 8250DA1860 | 100% | 2013-03-12 | 2013-03-12 | 825_7-day w/o holidays | DEAP |
| 8250DA1960 |  | Engineer Review & Approval on DDA for Design of Cross Passages & Grd Treatment Works from within the Tunnel |  | 33d | 2013-04-15 A | 2013-05-11 A | 8250DA1940 | 100% | 2013-04-08 | 2013-05-16 |  | DEAP |
| 8250DA1900 |  | Engineer Review on DDA for Design of Cross Passages & Grd Treatment Works from within the Tunnel |  | 33d | 2013-04-17 A | 2013-05-08 A | 8250DA1880 | 100% | 2013-02-28 | 2013-04-10 |  | DEAP |
| 8250DA1975 |  | Submit DDA for Design of ELS for CP Construction from within the Tunnel with ICE Cert | milestone | 0d | 2013-04-19 A | 2013-04-19 A | 8250DA1970 | 100% | 2013-05-30 | 2013-05-30 | 825_7-day w/o holidays | DEAP |
| 8250DA1980 |  | Engineer Review on DDA for Design of ELS for CP Construction from within the Tunnel |  | 26d | 2013-04-20 A | 2013-05-28 A | 8250DA1975 | 100% | 2013-05-31 | 2013-06-29 |  | DEAP |
| 8250DA1920 |  | Revise DDA for Design of Cross Passages & Grd Treatment Works from within the Tunnel |  | 25d | 2013-05-09 A | 2013-05-23 A | 8250DA1900 | 100% | 2013-03-14 | 2013-04-15 |  | DEAP |
| 8250DA1985 |  | Revise DDA for Design of ELS for CP Construction from within the Tunnel |  | 20d | 2013-05-29 A | 2013-06-05 A | 8250DA1980 | 100% | 2013-06-24 | 2013-07-17 |  | DEAP |
| 8250DA1970 |  | Prepare DDA for Design of ELS for CP Construction from within the Tunnel |  | 26d | 2013-07-27 A | 2013-08-26 A | 8250DA1960 | 100% | 2013-05-07 | 2013-06-06 |  | DEAP |
| 8250DA1990 |  | Re-Submit DDA for Design of ELS for CP Construction from within the Tunnel with ICE Cert | milestone | 0d | 2013-07-29 A | 2013-07-29 A | 8250DA1985 | 100% | 2013-07-11 | 2013-07-11 | 825_7-day w/o holidays | DEAP |
| 8250DA1995 |  | Engineer Review & Approval on DDA for Design of ELS for CP Construction from within the Tunnel |  | 26d | 2013-07-30 A | 2013-09-03 A | 8250DA1990 | 100% | 2013-07-12 | 2013-08-10 |  | DEAP |
| 8250DA1940 |  | Re-Submit DDA for Design of Cross Passages & Grd Treatment Works from within the Tunnel with ICE Cert | milestone | 0d | 2013-09-19 A | 2013-09-19 A | 8250DA1920 | 100% | 2013-04-06 | 2013-04-06 | 825_7-day w/o holidays | DEAP |

Notes:
- 8250DA1900: Basis & Assumptions: 25March2013 - To be / completed by 15Apr2013 as per Eric Lee of Engineering / Department

| ID | WBS | Activity | Type | Duration | Start | Finish | Predecessors | Complete | Planned start | Planned finish | Total float | Calendar | Resources | 825 Phase | 825 Location | 825 Sub-location |
| --- | --- | --- | --- | --- | --- | --- | --- | --- | --- | --- | --- | --- | --- | --- | --- | --- |
|  | 7 | **ROAD DEVELOPMENT & UTILITIES** |  |  |  |  |  |  |  |  |  |  |  |  |  |  |
|  | 4 | **SITE ESTABILISHMENT** |  |  | 2010-02-01 | 2018-07-30 |  |  |  |  |  |  |  |  |  |  |
| 8250SE1000 |  | Access to Works Areas 1.3, 1.4, 1.5, 1.6, 1.7, 1.8, 1.9, 1.17 for Initial Site Establishment | milestone | 0d | 2010-02-01 A | 2010-02-01 A | 8250AC070 SS, 8250AC100 SS, 8250AC080 SS, 8250AC090 SS, 8250AC030 SS, 8250AC050 SS, 8250AC041 SS, 8250AC040 SS | 100% |  |  |  | 825_7-day w/o holidays |  | SITE |  |  |
| 8250SE1020 |  | Erect Hoarding Enclosing the Above Areas |  | 6.6d | 2010-02-01 A | 2010-02-06 A | 8250KD00 SS, 8250SE1000 SS | 100% | 2010-02-01 | 2010-02-08 |  |  |  | SITE |  |  |
| 8250SE1040 |  | Construct POC's Temporary Site Office |  | 1d | 2010-02-01 A | 2010-02-17 A | 8250AC090 SS | 100% | 2010-02-01 | 2010-02-01 |  |  | Lorry Crane [132 h] | SITE |  |  |
| 8250SE1100 |  | Engineer's Approval on Engineer's Site Office Design | milestone | 0d | 2010-02-01 A | 2010-02-01 A | 8250SM5020 FF | 100% |  |  |  | 825_7-day w/o holidays |  | SITE |  |  |
| 8250SE1060 |  | Install 6 Containers for Engineer's Temporary Site Office |  | 2d | 2010-02-18 A | 2010-02-19 A | 8250SE1040 | 100% |  |  |  |  | Lorry Crane [22 h] | SITE |  |  |
| 8250SE1080 |  | EPD Consent Granted for Construction at Works Area 1.1 | milestone | 0d | 2010-02-26 A | 2010-02-26 A | 8250DC1280 FF | 100% |  |  |  | 825_7-day w/o holidays |  | SITE |  |  |
| 8250SE1120 |  | Construct Engineer's site office at Works Area 1.1 |  | 26.4d | 2010-02-27 A | 2010-03-26 A | 8250SM2740, 8250SE1080, 8250SE1100 | 100% | 2010-02-27 | 2010-03-30 |  |  | Lorry Crane [48 h] | SITE |  |  |
| 8250SE1220 |  | Trees at Castle Peak Road New Site Entrance Transplanted | milestone | 0d | 2010-03-03 A | 2010-03-03 A | 8250SM3260 FS+26.4d | 100% |  |  |  | 825_7-day w/o holidays |  | SITE |  |  |
| 8250SE1240 |  | Construct New Site Entrance and Concrete Pave Access Road to TBM Transformer Room |  | 12d | 2010-03-04 A | 2010-03-17 A | 8250SE1220 | 100% |  |  |  |  | Drilling Rig [24 h] | SITE |  |  |
| 8250SE1260 |  | Install Additional Wheel Washing Facility Near the New Site Entrance before Vent Shaft Excavation |  | 13.2d | 2010-03-04 A | 2010-03-17 A | 8250SE1240 SS | 100% | 2010-03-04 | 2010-03-19 |  |  | Drilling Rig [24 h] | SITE |  |  |
| 8250SE1140 |  | Construct POC's Site Office |  | 24d | 2010-03-27 A | 2010-04-28 A | 8250SE1120 | 100% |  |  |  |  | Lorry Crane [48 h] | SITE |  |  |
| 8250SE1160 |  | Install Office Equipment & Furniture for Engineer's Site Office |  | 13.2d | 2010-03-27 A | 2010-04-14 A | 8250SE1120 | 100% | 2010-03-27 | 2010-04-16 |  |  |  | SITE |  |  |
| 8250SE1180 |  | Install Office Equipment & Furniture for POC's Site Office |  | 13.2d | 2010-04-29 A | 2010-05-13 A | 8250SE1140 | 100% | 2010-04-29 | 2010-05-15 |  |  |  | SITE |  |  |
| 8250SE1200-100 |  | Defect Liability Period |  | 365d | 2017-07-31 | 2018-07-30 | 8250KD01 |  |  |  | 0d | 825_7-day w/o holidays |  |  |  |  |
| 8250SE1200 |  | Maintain the Engineer's Office till end of DLP (assumed) | milestone | 0d | 2018-07-30 | 2018-07-30 | 8250SE1200-100 |  |  |  | 0d | 825_7-day w/o holidays |  | SITE |  |  |
|  | 1 | **DECONTAMINATION WORKS** |  |  | 2010-02-01 | 2010-06-15 |  |  |  |  |  |  |  |  |  |  |
|  | 1 | **PARTS OR ALL OF WORKS AREAS 1.3, 1.4B, 1.5, 1.6, 1.7 & 1.17** |  |  | 2010-04-22 | 2010-06-15 |  |  |  |  |  |  |  |  |  |  |
| 8250DC1020 |  | Site Investigation for Contaminated Soil |  | 6.6d | 2010-04-22 A | 2010-04-28 A | 8250DC1000 | 100% | 2010-04-22 | 2010-04-29 |  |  |  | SITE | 2000 | DCZ1 |
| 8250DC1000 |  | MTR's CAP Endorsed by EPD | milestone | 0d | 2010-04-22 A | 2010-04-22 A | 8250KD00 | 100% |  |  |  | 825_7-day w/o holidays |  | SITE | 2000 | DCZ1 |
| 8250DC1040 |  | Laboratory Test for Samples |  | 13.2d | 2010-04-29 A | 2010-05-13 A | 8250DC1020 | 100% | 2010-04-29 | 2010-05-15 |  |  |  | SITE | 2000 | DCZ1 |
| 8250DC1060 |  | Prepare CAR/RAP with No Remediation Action Required |  | 13.2d | 2010-05-14 A | 2010-05-29 A | 8250DC1040 | 100% | 2010-05-14 | 2010-05-31 |  |  |  | SITE | 2000 | DCZ1 |
| 8250DC1100 |  | MTR to Review & Comment CAR/RAP and Confirm No Remediation Required |  | 6.6d | 2010-05-29 A | 2010-06-05 A | 8250DC1080 | 100% |  |  |  |  |  | SITE | 2000 | DCZ1 |
| 8250DC1080 |  | Submit CAR/RAP to MTR | milestone | 0d | 2010-05-29 A | 2010-05-29 A | 8250DC1060 | 100% |  |  |  | 825_7-day w/o holidays |  | SITE | 2000 | DCZ1 |
| 8250DC1120 |  | MTR to Forward CAR/RAP to EPD for Endorsement |  | 2.2d | 2010-06-05 A | 2010-06-08 A | 8250DC1100 | 100% |  |  |  |  |  | SITE | 2000 | DCZ1 |
| 8250DC1140 |  | EPD to Review and Confirm No Remediation Action Required and Grant Consent for Construction |  | 6.6d | 2010-06-08 A | 2010-06-15 A | 8250DC1120 | 100% |  |  |  |  |  | SITE | 2000 | DCZ1 |

| ID | WBS | Activity | Type | Duration | Start | Finish | Predecessors | Complete | Planned start | Planned finish | Calendar | 825 Phase | 825 Location | 825 Sub-location |
| --- | --- | --- | --- | --- | --- | --- | --- | --- | --- | --- | --- | --- | --- | --- |
|  | 2 | **WORKS AREAS 1.1 & 1.19** |  |  | 2010-02-01 | 2010-02-26 |  |  |  |  |  |  |  |  |
| 8250DC1160 |  | Access to Works Areas 1.1 & 1.19 | milestone | 0d | 2010-02-01 A | 2010-02-01 A | 8250AC200 SS, 8250AC010 SS | 100% |  |  | 825_7-day w/o holidays | SITE | 2000 | DCZ2 |
| 8250DC1180 |  | Destop Study |  | 3.3d | 2010-02-01 A | 2010-02-03 A | 8250DC1160 | 100% | 2010-02-01 | 2010-02-04 |  | SITE | 2000 | DCZ2 |
| 8250DC1200 |  | Prepare CAP with No SI and No Decontamination Required |  | 6.6d | 2010-02-01 A | 2010-02-06 A | 8250DC1180 SS | 100% | 2010-02-01 | 2010-02-08 |  | SITE | 2000 | DCZ2 |
| 8250DC1220 |  | Submit CAP to MTR | milestone | 0d | 2010-02-06 A | 2010-02-06 A | 8250DC1200 | 100% |  |  | 825_7-day w/o holidays | SITE | 2000 | DCZ2 |
| 8250DC1240 |  | MTR to Review & Confirm that No SI and No Decontamination Required |  | 6.6d | 2010-02-08 A | 2010-02-17 A | 8250DC1220 | 100% | 2010-02-08 | 2010-02-18 |  | SITE | 2000 | DCZ2 |
| 8250DC1260 |  | MTR to Forward CAP to EPD for Endorsement |  | 2.2d | 2010-02-18 A | 2010-02-19 A | 8250DC1240 | 100% | 2010-02-18 | 2010-02-20 |  | SITE | 2000 | DCZ2 |
| 8250DC1280 |  | EPD to Review and Confirm No Remediation Action Required and Grant Consent for Construction |  | 6.6d | 2010-02-20 A | 2010-02-26 A | 8250DC1260 | 100% | 2010-02-20 | 2010-02-27 |  | SITE | 2000 | DCZ2 |
|  | 3 | **WORKS AREAS 1.2 & 1.16** |  |  | 2010-02-01 | 2010-02-26 |  |  |  |  |  |  |  |  |
| 8250DC1300 |  | Access to Works Areas 1.2 & 1.16 | milestone | 0d | 2010-02-01 A | 2010-02-01 A | 8250AC020 SS, 8250AC170 SS | 100% |  |  | 825_7-day w/o holidays | SITE | 2000 | DCZ3 |
| 8250DC1320 |  | Destop Study |  | 3.3d | 2010-02-01 A | 2010-02-03 A | 8250DC1300 SS | 100% | 2010-02-01 | 2010-02-04 |  | SITE | 2000 | DCZ3 |
| 8250DC1340 |  | Prepare CAP with No SI and No Decontamination Required |  | 6.6d | 2010-02-01 A | 2010-02-06 A | 8250DC1320 SS | 100% | 2010-02-01 | 2010-02-08 |  | SITE | 2000 | DCZ3 |
| 8250DC1360 |  | Submit CAP to MTR | milestone | 0d | 2010-02-06 A | 2010-02-06 A | 8250DC1340 | 100% |  |  | 825_7-day w/o holidays | SITE | 2000 | DCZ3 |
| 8250DC1380 |  | MTR to Review & Confirm that No SI and No Decontamination Required |  | 6.6d | 2010-02-08 A | 2010-02-17 A | 8250DC1360 | 100% | 2010-02-08 | 2010-02-18 |  | SITE | 2000 | DCZ3 |
| 8250DC1400 |  | MTR to Forward CAP to EPD for Endorsement |  | 2.2d | 2010-02-18 A | 2010-02-19 A | 8250DC1380 | 100% | 2010-02-18 | 2010-02-20 |  | SITE | 2000 | DCZ3 |
| 8250DC1420 |  | EPD to Review and Confirm No Remediation Action Required and Grant Consent for Construction |  | 6.6d | 2010-02-20 A | 2010-02-26 A | 8250DC1400 | 100% | 2010-02-20 | 2010-02-27 |  | SITE | 2000 | DCZ3 |
|  | 5 | **OFFSITE FABRICATION** |  |  | 2010-02-01 | 2014-05-31 |  |  |  |  |  |  |  |  |
|  | 1 | **TUNNEL BORING MACHINE** |  |  | 2010-02-01 | 2011-01-18 |  |  |  |  |  |  |  |  |
| 8250TBM100 |  | Procurement for the TBM |  | 33d | 2010-02-01 A | 2010-03-10 A | 8250KD00 | 100% | 2010-02-01 | 2010-03-13 |  | OFAB | 2550 |  |
| 8250TBM120 |  | Sign Contract with TBM Supplier | milestone | 0d | 2010-03-10 A | 2010-03-10 A | 8250TBM100 | 100% |  |  | 825_7-day w/o holidays | OFAB | 2550 |  |
| 8250TBM200 |  | Concept Design |  | 22d | 2010-03-26 A | 2010-04-22 A | 8250KD00 | 100% | 2010-03-26 | 2010-04-24 |  | OFAB | 2550 |  |
| 8250TBM220 |  | Manufacturing Design |  | 88d | 2010-04-23 A | 2010-07-30 A | 8250TBM200 | 100% | 2010-04-23 | 2010-08-07 |  | OFAB | 2550 |  |
| 8250TBM260 |  | Manufacturing Parts (Overseas) |  | 114.4d | 2010-04-23 A | 2010-08-27 A | 8250TBM120, 8250TBM220 SS | 100% | 2010-04-23 | 2010-09-08 |  | OFAB | 2550 |  |
| 8250TBM340 |  | Manufacturing & Purchasing in China |  | 108.9d | 2010-05-28 A | 2010-09-24 A | 8250TBM200, 8250TBM220 SS+30.8d | 100% | 2010-05-28 | 2010-10-07 |  | OFAB | 2550 |  |
| 8250TBM240 |  | Assembly Design |  | 78.1d | 2010-07-02 A | 2010-09-24 A | 8250TBM220 SS+61.6d | 100% | 2010-07-02 | 2010-10-04 |  | OFAB | 2550 |  |
| 8250TBM280 |  | Pre-Assembly & Packing (Overseas) |  | 26.4d | 2010-08-13 A | 2010-09-10 A | 8250TBM260 FS-13.2d | 100% | 2010-08-13 | 2010-09-13 |  | OFAB | 2550 |  |
| 8250TBM320 |  | Shipment from Overseas to China Workshop |  | 34.1d | 2010-09-10 A | 2010-10-20 A | 8250TBM300, 8250TBM240 FF | 100% | 2010-09-10 | 2010-10-23 |  | OFAB | 2550 |  |
| 8250TBM300 |  | Ready for Shipment from Overseas to China Workshop | milestone | 0d | 2010-09-10 A | 2010-09-10 A | 8250TBM280 FF | 100% |  |  | 825_7-day w/o holidays | OFAB | 2550 |  |
| 8250TBM140 |  | Parts Assembly in China Workshop |  | 77d | 2010-09-21 A | 2010-11-30 A | 8250TBM340 FS-2.2d | 100% | 2010-09-21 | 2010-12-23 |  | OFAB | 2550 |  |
| 8250TBM160 |  | Test Run and Acceptance |  | 13.2d | 2010-11-30 A | 2010-12-12 A | 8250TBM140 | 100% | 2010-11-30 | 2010-12-15 |  | OFAB | 2550 |  |
| 8250TBM180 |  | Disassembly & Delivery to Site |  | 39.6d | 2010-12-12 A | 2011-01-18 A | 8250TBM160, 8250SM5160 | 100% | 2010-12-13 | 2011-01-31 |  | OFAB | 2550 |  |

| ID | WBS | Activity | Type | Duration | Start | Finish | Predecessors | Complete | Planned start | Planned finish | Calendar | Resources | 825 Phase | 825 Location | 825 Sub-location |
| --- | --- | --- | --- | --- | --- | --- | --- | --- | --- | --- | --- | --- | --- | --- | --- |
|  | 2 | **TUNNEL LINING SEGMENTS** |  |  | 2010-04-01 | 2014-05-31 |  |  |  |  |  |  |  |  |  |
| 8250PS1015 |  | Procurement for Tunnel Segment Mould Supplier |  | 24.2d | 2010-04-01 A | 2010-04-30 A | 8250KD00 | 100% | 2010-04-01 | 2010-05-05 |  |  | OFAB | 2555 |  |
| 8250PS1050 |  | Procurement for Tunnel Segment Lining Supplier |  | 39.6d | 2010-04-01 A | 2010-05-19 A | 8250KD00 | 100% | 2010-04-01 | 2010-05-24 |  |  | OFAB | 2555 |  |
| 8250PS1070 |  | Approval Obtained for Tunnel Lining Design | milestone | 0d | 2010-04-28 A | 2010-04-28 A | 8250DA1600 FF, 8250DA1720 FF | 100% | 2010-06-23 | 2010-06-23 | 825_7-day w/o holidays |  | OFAB | 2555 |  |
| 8250PS1020 |  | Sign Contract with the Tunnel Segment Mould Supplier | milestone | 0d | 2010-04-30 A | 2010-04-30 A | 8250PS1015 FF | 100% |  |  | 825_7-day w/o holidays |  | OFAB | 2555 |  |
| 8250PS1025 |  | Approval Obtained for Tunnel Segment Mould Design | milestone | 0d | 2010-07-13 A | 2010-07-13 A | 8250SM5640 FF | 100% | 2010-07-22 | 2010-07-22 | 825_7-day w/o holidays |  | OFAB | 2555 |  |
| 8250PS1060 |  | Sign Contract with the Tunnel Lining Segment Supplier | milestone | 0d | 2010-07-31 A | 2010-07-31 A | 8250PS1050 | 100% | 2010-05-19 | 2010-05-19 | 825_7-day w/o holidays |  | OFAB | 2555 |  |
| 8250PS1030 |  | Manufacture Segment Moulds (4 Sets) & Trial Pours |  | 66d | 2010-08-30 A | 2010-10-31 A | 8250PS1025 | 100% | 2010-07-22 | 2010-10-09 |  |  | OFAB | 2555 |  |
| 8250PS1035 |  | Delivery of Segment Moulds (4 Sets) from Factory to Hong Kong |  | 15.4d | 2010-09-30 A | 2010-10-31 A | 8250PS1030 | 100% | 2010-09-20 | 2010-10-09 |  |  | OFAB | 2555 |  |
| 8250PS1040 |  | Delivery of Segment Moulds (4 Sets) to Segment Factory |  | 7.7d | 2010-11-13 A | 2010-11-20 A | 8250PS1035 | 100% | 2010-10-04 | 2010-10-12 |  |  | OFAB | 2555 |  |
| 8250PS1080 |  | Set-Up Production Line |  | 33d | 2010-11-22 A | 2011-02-28 A | 8250PS1030 FF+2.2d, 8250PS1060, 8250PS1040 FF+13.2d, 8250PS1070 | 100% | 2010-09-24 | 2010-11-03 |  |  | OFAB | 2555 |  |
| 8250PS1090 |  | Start Production of Tunnel Segments | milestone | 0d | 2011-03-01 A | 2011-03-01 A | 8250PS1030, 8250PS1080, 8250PS1025, 8250PS1070 | 100% | 2010-10-23 | 2010-10-23 | 825_7-day w/o holidays |  | OFAB | 2555 |  |
| 8250PS1100 |  | Production of Segments for SB Tunnel |  | 575d | 2011-03-01 A | 2012-05-31 A | 8250PS1090 SS, 8250ID02 | 100% | 2010-10-23 | 2012-10-03 |  |  | OFAB | 2555 |  |
|  | 1 | **PRODUCTION OF SEGMENTS** |  |  | 2012-06-01 | 2013-08-21 |  |  |  |  |  |  |  |  |  |
| 8250PS1142 |  | Production of Segments for NB Tunnel - Phase 1 |  | 82d | 2012-06-01 A | 2013-08-21 A | 8250PS1100 | 100% | 2013-02-28 | 2013-06-08 |  |  | OFAB | 2555 | SEGP |
| 8250PS1144 |  | Production of Segments for NB Tunnel - Phase 2 |  | 82d | 2012-08-22 A | 2012-11-11 A | 8250PS1142 | 100% | 2013-05-31 | 2013-09-05 |  |  | OFAB | 2555 | SEGP |
| 8250PS1146 |  | Production of Segments for NB Tunnel - Phase 3 |  | 82d | 2012-11-12 A | 2013-01-31 A | 8250PS1144 | 100% | 2013-02-28 | 2013-06-08 |  |  | OFAB | 2555 | SEGP |
| 8250PS1148 |  | Production of Segments for NB Tunnel - Phase 4 |  | 74.55d | 2013-02-01 A | 2013-07-31 A | 8250PS1146 | 100% | 2013-02-28 | 2013-05-31 |  | Concretors [3280 h]; Steel & Rebar skilled worker (crew of 4) [3280 h]; General Labor (Crew of 4) [3280 h] | OFAB | 2555 | SEGP |
|  | 2 | **DELIVERIES OF SEGMENTS** |  |  | 2011-08-03 | 2014-05-31 |  |  |  |  |  |  |  |  |  |
| 8250PS1122 |  | Delivery of Segments for SB Tunnel to Site - Phase 1 |  | 59d | 2011-08-03 A | 2011-09-30 A | 8250PS1100 SS+7d | 100% | 2013-02-28 | 2013-05-11 |  |  | OFAB | 2555 | SEGD |
| 8250PS1124 |  | Delivery of Segments for SB Tunnel to Site - Phase 2 |  | 59d | 2011-10-01 A | 2011-11-28 A | 8250PS1122 | 100% | 2013-02-28 | 2013-05-11 |  |  | OFAB | 2555 | SEGD |
| 8250PS1126 |  | Delivery of Segments for SB Tunnel to Site - Phase 3 |  | 59d | 2011-11-29 A | 2012-01-26 A | 8250PS1124 | 100% | 2013-02-28 | 2013-05-11 |  |  | OFAB | 2555 | SEGD |
| 8250PS1128 |  | Delivery of Segments for SB Tunnel to Site - Phase 4 |  | 59d | 2012-01-27 A | 2012-03-25 A | 8250PS1126 | 100% | 2013-02-28 | 2013-05-11 |  |  | OFAB | 2555 | SEGD |
| 8250PS1130 |  | Delivery of Segments for SB Tunnel to Site - Phase 5 |  | 59d | 2012-03-26 A | 2012-05-23 A | 8250PS1128 | 100% | 2013-02-28 | 2013-05-11 |  |  | OFAB | 2555 | SEGD |
| 8250PS1132 |  | Delivery of Segments for SB Tunnel to Site - Phase 6 |  | 59d | 2012-05-24 A | 2012-07-21 A | 8250PS1130 | 100% | 2013-02-28 | 2013-05-11 |  |  | OFAB | 2555 | SEGD |
| 8250PS1134 |  | Delivery of Segments for SB Tunnel to Site - Phase 7 |  | 59d | 2012-07-22 A | 2012-09-18 A | 8250PS1132 | 100% | 2013-02-28 | 2013-05-11 |  |  | OFAB | 2555 | SEGD |
| 8250PS1136 |  | Delivery of Segments for SB Tunnel to Site - Phase 8 |  | 53.65d | 2012-09-19 A | 2013-07-13 A | 8250PS1134 | 100% | 2013-02-28 | 2013-05-06 |  | 500T Lifting Crane [590 h]; Crawler Crane [590 h]; General Steel Worker (crew of 4) [2360 h] | OFAB | 2555 | SEGD |
| 8250PS1162 |  | Delivery of Segments for NB Tunnel to Site - Phase 1 |  | 50d | 2013-07-01 A | 2013-11-16 A | 8250PS1136, 8250PS1148 SS+7d, 8250NB1080 SS-10d | 100% | 2013-05-23 | 2013-07-22 |  | General Steel Worker (crew of 4) [2000 h]; 500T Lifting Crane [500 h]; Crawler Crane [500 h] | OFAB | 2555 | SEGD |
| 8250PS1164 |  | Delivery of Segments for NB Tunnel to Site - Phase 2 (260 Nos.) |  | 50d | 2013-11-18 A | 2014-02-21 A | 8250PS1162 | 100% | 2013-10-02 | 2013-11-29 |  | General Steel Worker (crew of 4) [2000 h]; 500T Lifting Crane [500 h]; Crawler Crane [500 h] | OFAB | 2555 | SEGD |
| 8250PS1166 |  | Delivery of Segments for NB Tunnel to Site - Phase 3 (260 Nos.) |  | 50d | 2014-02-22 A | 2014-04-17 A | 8250PS1164 | 100% | 2013-11-30 | 2014-01-30 |  | General Steel Worker (crew of 4) [2000 h]; 500T Lifting Crane [500 h]; Crawler Crane [500 h] | OFAB | 2555 | SEGD |
| 8250PS1168 |  | Delivery of Segments for NB Tunnel to Site - Phase 4 (260 Nos.) |  | 50d | 2014-04-22 A | 2014-05-09 A | 8250PS1166 | 100% | 2014-01-31 | 2014-04-01 |  | 500T Lifting Crane [500 h]; Crawler Crane [500 h]; General Steel Worker (crew of 4) [2000 h] | OFAB | 2555 | SEGD |
| 8250PS1170 |  | Delivery of Segments for NB Tunnel to Site - Phase 5 (263 Nos.) |  | 42d | 2014-05-10 A | 2014-05-31 A | 8250PS1168 | 100% | 2014-04-02 | 2014-05-27 |  | General Steel Worker (crew of 4) [1680 h]; 500T Lifting Crane [420 h]; Crawler Crane [420 h] | OFAB | 2555 | SEGD |

| ID | WBS | Activity | Type | Duration | Start | Finish | Predecessors | Complete | Planned start | Planned finish | Constraint | Calendar | Resources | 825 Phase | 825 Location | Updated Progress Status | 825 Sub-location |
| --- | --- | --- | --- | --- | --- | --- | --- | --- | --- | --- | --- | --- | --- | --- | --- | --- | --- |
|  | 6 | **CONSTRUCTION** |  |  | 2010-02-01 | 2017-06-30 |  |  |  |  |  |  |  |  |  |  |  |
|  | 1 | **INSTRUMENTATION** |  |  | 2010-04-01 | 2012-12-29 |  |  |  |  |  |  |  |  |  |  |  |
| 8250IN1000 |  | Access to Works Areas 1.3, 1.4, 1.5, 1.6, 1.7, 1.8, 1.9, 1.17 for Site Establishment | milestone | 0d | 2010-04-01 A | 2010-04-01 A | 8250AC030 SS, 8250AC050 SS, 8250AC180 SS, 8250AC090 SS, 8250AC100 SS, 8250AC040 SS, 8250AC070 SS, 8250AC041 SS, 8250AC080 SS | 100% |  |  |  | 825_7-day w/o holidays |  | CONS | 2557 |  |  |
| 8250IN1020 |  | Install Instrumentation within VB1 Monitoring Zone for DW Construction & Excavation |  | 39.6d | 2010-04-07 A | 2010-05-20 A | 8250IN1000, 8250SM3500 FF | 100% | 2010-04-07 | 2010-05-25 |  |  |  | CONS | 2557 |  |  |
| 8250IN1040 |  | Install Instrumentation to Monitor EBS Deformation along Tunnel Alignment prior to Tunnelling |  | 79.2d | 2011-03-29 A | 2012-12-29 A | 8250SM3620 | 100% | 2010-10-20 | 2011-01-24 |  |  |  | CONS | 2557 |  |  |
|  | 13 | **SUMMARY OF INTERFACING CONTRACTORS INFORMATION** |  |  | 2014-10-19 | 2016-12-29 |  |  |  |  |  |  |  |  |  |  |  |
|  | 1 | **CONTRACT 830 (TRACK WORKS & OHL)** |  |  | 2014-10-19 | 2016-12-29 |  |  |  |  |  |  |  |  |  |  |  |
| 8250CC11528 |  | 830 Rail Tracks Unloading Works & Installation - SB/DT (Opening 7x5m) at Bay 7 |  | 449d | 2014-10-19 A | 2015-12-23 A | 8250CC10600 | 100% | 2015-03-31 | 2016-06-21 |  | 825_7-day w/o holidays |  |  |  |  |  |
| 8250CC11530 |  | 830 Access in C & C Bay 2-6 (approx. 60m) |  | 371d | 2015-03-02 A | 2016-12-29 A | 8250CC10600, 8250ID18 | 100% | 2015-03-31 | 2016-04-04 |  | 825_7-day w/o holidays |  |  |  |  |  |
| 8250CC11529 |  | 830 Rail Tracks Unloading Works & Installation - NB/UT (Opening 7x5m) at Bay 7 |  | 227d | 2015-07-24 A | 2016-03-02 A | 8250KD4A, 8250CC7550 | 100% | 2015-07-25 | 2016-03-07 |  | 825_7-day w/o holidays |  |  |  |  |  |
| 8250CC11528-100 |  | 830 Complete SB/DT (Opening 7x5m) at Bay 7 | milestone | 0d | 2015-12-23 A | 2015-12-23 A | 8250CC11528 | 100% | 2016-09-09 | 2016-09-09 |  | 825_7-day w/o holidays |  |  |  | Upd |  |
| 8250CC11530-100 |  | 830 Complete in C & C Bay 2-6 | milestone | 0d | 2015-12-29 A | 2015-12-29 A | 8250CC11530 | 100% | 2016-11-04 | 2016-11-04 |  | 825_7-day w/o holidays |  |  |  | Upd |  |
| 8250CC11535 |  | Invert, Walkway & Brackets for Cut & Cover Tunnels Bay 2-6 (NB) |  | 14d | 2016-01-15 A | 2016-03-31 A | 8250CC11530, 8250CC11530-100 | 100% | 2016-11-05 | 2016-11-18 |  | 825_7-day w/o holidays | Concrete Pump [140 h]; Grouting Machine [140 h]; Dump Truck [140 h]; Crawler Crane [140 h]; General Labor (Crew of 4) [700 h]; Carpenter [700 h]; Concretors [700 h]; Steel & Rebar skilled worker (crew of 4) [700 h]; Struts installation skilled labor (crew of 5) [875 h]; General Labor (crew of 4) [700 h]; Strut Skilled labors (Welders & Fitters) (crew of 4) [700 h] | CONS | 2580 |  | BINV |
| 8250CC11529-100 |  | 830 Complete NB/UT (Opening 7x5m) at Bay 7 | milestone | 0d | 2016-03-02 A | 2016-03-02 A | 8250CC11529 | 100% | 2016-11-04 | 2016-11-04 |  | 825_7-day w/o holidays |  |  |  | Upd |  |
|  | 2 | **CONTRACT 826 TUNNELS** |  |  | 2015-08-17 | 2016-02-04 |  |  |  |  |  |  |  |  |  |  |  |
| 8250SWTUp0180 |  | 826 TBM Breakthrough at Mai Po Shaft for NB | milestone | 0d | 2015-08-17 A | 2015-08-17 A | 8250VB1520 SS | 100% | 2015-08-31 | 2015-08-31 | start on or after 2015-05-30 | 825_7-day w/o holidays |  | PDAT | 2548 |  | 826CON |
| 8250SWTUp0200 |  | 826 Dismantle TBM and Remove Cutter Head and Shield for NB |  | 67d | 2015-08-17 A | 2015-10-22 A | 8250SWTUp0180 | 100% | 2015-08-31 | 2015-11-05 |  | 825_7-day w/o holidays |  | PDAT | 2548 |  | 826CON |
| 8250SWTDn0180 |  | 826 TBM Breakthrough at Mai Po Shaft for SB | milestone | 0d | 2015-11-04 A | 2015-11-04 A |  | 100% | 2016-06-30 | 2016-06-30 | start on or after 2015-11-04 | 825_7-day w/o holidays |  | PDAT | 2548 |  | 826CON |
| 8250SWTDn0200 |  | 826 Dismantle TBM and Remove Cutter Head and Shield for SB |  | 60d | 2015-11-05 A | 2016-02-04 A | 8250SWTDn0180 | 100% | 2016-06-30 | 2016-08-28 |  | 825_7-day w/o holidays |  | PDAT | 2548 |  | 826CON |
| 8250SWTDn0220 |  | 826 Possess Retrieval Shaft and Surface Works Area for TBM Dismantling |  | 187d | 2015-11-05 A | 2016-02-04 A | 8250SWMP0030, 8250SWTDn0200 FF+7d, 8250SWTUp0200 FF, 8250NBDIS0510 | 100% | 2015-11-30 | 2016-06-03 |  | 825_7-day w/o holidays |  |  |  |  |  |
|  | 2 | **TBM LAUNCHING SHAFT** |  |  | 2010-02-07 | 2011-03-26 |  |  |  |  |  |  |  |  |  |  |  |
| 8250ELS520 |  | Temporary Base Slab for TBM Launching Pit |  | 6.6d | 2011-02-08 A | 2011-02-14 A | 8250ELS500 | 100% | 2011-02-08 | 2011-02-15 |  |  |  | CONS | 2560 |  |  |
| 8250ELS525 |  | Curing Period for the Temporary Base Slab to Achieve Sufficient Strength without Shoring Support from L6 & L7 struts |  | 7.7d | 2011-02-15 A | 2011-02-21 A | 8250ELS520 | 100% | 2011-02-15 | 2011-02-23 |  |  |  | CONS | 2560 |  |  |
| 8250ELS530 |  | Remove L7 & L6 Struts & Wallings |  | 6d | 2011-02-22 A | 2011-02-28 A | 8250ELS525 | 100% |  |  |  |  | Crawler Crane [66 h] | CONS | 2560 |  |  |

| ID | WBS | Activity | Type | Duration | Start | Finish | Predecessors | Complete | Planned start | Planned finish | Calendar | Resources | 825 Phase | 825 Location |
| --- | --- | --- | --- | --- | --- | --- | --- | --- | --- | --- | --- | --- | --- | --- |
|  | 1 | **DIAPHRAGM WALLS** |  |  | 2010-02-07 | 2010-09-30 |  |  |  |  |  |  |  |  |
| 8250DW1000 |  | Access to Works Areas 1.3, 1.4, 1.5, 1.6, 1.7,1.8 | milestone | 0d | 2010-02-07 A | 2010-02-07 A | 8250AC040 SS, 8250AC080 SS, 8250AC090 SS, 8250AC050 SS, 8250AC070 SS, 8250AC041 SS, 8250AC030 SS | 100% | 2010-02-08 | 2010-02-08 | 825_7-day w/o holidays |  | CONS | 2560 |
| 8250DW1020 |  | Mobilization of Heavy Plants Including the Hydrofraise |  | 39.6d | 2010-02-08 A | 2010-03-24 A | 8250DW1000 SS | 100% | 2010-02-08 | 2010-03-29 |  | Lorry Crane [72 h] | CONS | 2560 |
| 8250DW1060 |  | Set Up Bentolite Batching Plant |  | 36d | 2010-02-08 A | 2010-03-24 A | 8250DW1020 SS | 100% |  |  |  | Lorry Crane [72 h] | CONS | 2560 |
| 8250DW1040 |  | Set Up Hydrofraise on Site |  | 9d | 2010-03-25 A | 2010-04-08 A | 8250DW1020 | 100% |  |  |  | Lorry Crane [18 h] | CONS | 2560 |
| 8250DW1100 |  | Geotechnical Ground Investigation |  | 30d | 2010-03-25 A | 2010-05-04 A | 8250DW1020 | 100% |  |  |  | Drilling Rig [330 h] | CONS | 2560 |
| 8250DW1120 |  | Guide Wall |  | 46d | 2010-03-25 A | 2010-05-25 A | 8250DW1020, 8250SE1020, 8250SE1060 | 100% | 2010-03-25 | 2010-05-24 |  | Drilling Rig [506 h]; Concrete [252 m3] | CONS | 2560 |
| 8250DW1080 |  | Take Instrumentation Baseline Record |  | 1.1d | 2010-04-14 A | 2010-04-14 A | 8250IN1020 SS+6.6d | 100% | 2010-04-14 | 2010-04-15 |  |  | CONS | 2560 |
| 8250DW1140 |  | DW (CH 117+400 to CH 117+510) |  | 119.75d | 2010-04-15 A | 2010-09-30 A | 8250DW1080, 8250DW1040, 8250DW1100 FF+26.4d, 8250DA1420, 8250DW1060, 8250DW1120 SS+15.4d | 100% | 2010-04-15 | 2010-09-06 |  | Desander Unit [1350 h]; Hydrofraise [506 h]; DW Rig with Clamshell [1012 h]; Crawler Crane [2970 h]; Generator [2970 h]; Drilling Rig [1485 h]; Dump Truck [1485 h]; Concrete [13800 m3]; Diaphragm Wall Excavated Material [13800 m3] | CONS | 2560 |
| 8250DW2080 |  | DW Panel No. 12 - Stage 2 Exc |  | 6.6d | 2010-04-15 A | 2010-05-04 A | 8250DW1140 SS | 100% | 2010-04-15 | 2010-04-22 |  |  | CONS | 2560 |
| 8250DW1180 |  | DW Panel No. 32 - Stage 2 Exc |  | 6.6d | 2010-04-26 A | 2010-05-07 A | 8250DW2080 SS+3.3d | 100% | 2010-04-19 | 2010-04-26 |  |  | CONS | 2560 |
| 8250DW1200 |  | DW Panel No. 16 - Stage 1 Exc |  | 18.7d | 2010-05-04 A | 2010-05-12 A | 8250DW1180 SS+3.3d | 100% | 2010-05-04 | 2010-05-26 |  |  | CONS | 2560 |
| 8250DW1220 |  | DW Panel No. 20 - Stage 1 Exc |  | 6.6d | 2010-05-06 A | 2010-05-15 A | 8250DW1200 SS+3.3d | 100% | 2010-04-26 | 2010-05-04 |  |  | CONS | 2560 |
| 8250DW1240 |  | DW Panel No. 13 - Stage 1 Exc |  | 6.6d | 2010-05-07 A | 2010-05-19 A | 8250DW1220 SS+3.3d | 100% | 2010-04-29 | 2010-05-07 |  |  | CONS | 2560 |
| 8250DW1260 |  | DW Panel No. 9 - Stage 1 Exc |  | 6.6d | 2010-05-15 A | 2010-05-26 A | 8250DW1240 SS+3.3d | 100% | 2010-05-04 | 2010-05-11 |  |  | CONS | 2560 |
| 8250DW1280 |  | DW Panel No. 17 - Stage 1 Exc |  | 6.6d | 2010-05-15 A | 2010-05-29 A | 8250DW1260 SS+3.3d | 100% | 2010-05-07 | 2010-05-14 |  |  | CONS | 2560 |
| 8250DW1300 |  | DW Panel No. 21 - Stage 1 Exc |  | 6.6d | 2010-05-17 A | 2010-06-02 A | 8250DW1280 SS+3.3d | 100% | 2010-05-11 | 2010-05-18 |  |  | CONS | 2560 |
| 8250DW1380 |  | DW Panel No. 14 - Stage 1 Exc |  | 6.6d | 2010-05-25 A | 2010-06-05 A | 8250DW1360 SS+2.2d | 100% | 2010-05-25 | 2010-06-01 |  |  | CONS | 2560 |
| 8250DW1420 |  | DW Panel No. 29 - Stage 1 Exc |  | 6.6d | 2010-05-28 A | 2010-06-09 A | 8250DW1400 SS+2.2d | 100% | 2010-05-29 | 2010-06-05 |  |  | CONS | 2560 |
| 8250DW1440 |  | DW Panel No. 26 - Stage 1 Exc |  | 5.5d | 2010-05-28 A | 2010-06-07 A | 8250DW1420 SS+2.2d | 100% | 2010-06-01 | 2010-06-07 |  |  | CONS | 2560 |
| 8250DW1320 |  | DW Panel No. 5 - Stage 1 Exc |  | 6.6d | 2010-06-01 A | 2010-06-15 A | 8250DW1300 SS+3.3d | 100% | 2010-05-14 | 2010-05-22 |  |  | CONS | 2560 |
| 8250DW1400 |  | DW Panel No. 18 - Stage 1 Exc |  | 6.6d | 2010-06-01 A | 2010-06-09 A | 8250DW1380 SS+2.2d | 100% | 2010-05-27 | 2010-06-03 |  |  | CONS | 2560 |
| 8250DW1340 |  | DW Panel No. 15 - Stage 1 Exc |  | 6.6d | 2010-06-05 A | 2010-06-19 A | 8250DW1320 SS+3.3d | 100% | 2010-05-18 | 2010-05-26 |  |  | CONS | 2560 |
| 8250DW1560 |  | DW Panel No. 8 - Stage 1 Exc |  | 6.6d | 2010-06-05 A | 2010-06-12 A | 8250DW1540 SS+3.3d | 100% | 2010-06-22 | 2010-06-29 |  |  | CONS | 2560 |
| 8250DW1360 |  | DW Panel No. 19 - Stage 1 Exc |  | 6.6d | 2010-06-09 A | 2010-06-23 A | 8250DW1340 SS+3.3d | 100% | 2010-05-22 | 2010-05-29 |  |  | CONS | 2560 |
| 8250DW1500 |  | DW Panel No. 24 - Stage 1 Exc |  | 6.6d | 2010-06-10 A | 2010-06-18 A | 8250DW1480 SS+3.3d | 100% |  |  |  |  | CONS | 2560 |
| 8250DW1520 |  | DW Panel No. 28 - Stage 1 Exc |  | 6.6d | 2010-06-12 A | 2010-06-24 A | 8250DW1500 SS+3.3d | 100% | 2010-06-14 | 2010-06-22 |  |  | CONS | 2560 |
| 8250DW1620 |  | DW Panel No. 10 - Stage 1 Exc |  | 6.6d | 2010-06-16 A | 2010-06-25 A | 8250DW1600 SS+3.3d | 100% | 2010-07-03 | 2010-07-10 |  |  | CONS | 2560 |
| 8250DW1700 |  | DW Panel No. 7 - Stage 1 Exc |  | 6.6d | 2010-06-16 A | 2010-06-26 A | 8250DW1680 SS+3.3d | 100% | 2010-07-17 | 2010-07-24 |  |  | CONS | 2560 |
| 8250DW1540 |  | DW Panel No. 25 - Stage 1 Exc |  | 6.6d | 2010-06-19 A | 2010-06-28 A | 8250DW1520 SS+3.3d | 100% | 2010-06-18 | 2010-06-25 |  |  | CONS | 2560 |
| 8250DW1720 |  | DW Panel No. 1 - Stage 2 Exc |  | 6.6d | 2010-06-22 A | 2010-07-06 A | 8250DW1980 SS+2.2d | 100% | 2010-07-23 | 2010-07-30 |  |  | CONS | 2560 |
| 8250DW1600 |  | DW Panel No. 4 - Stage 1 Exc |  | 6.6d | 2010-06-23 A | 2010-06-29 A | 8250DW1580 SS+3.3d | 100% | 2010-06-29 | 2010-07-07 |  |  | CONS | 2560 |
| 8250DW1820 |  | DW Panel No. 31 - Stage 2 Exc |  | 6.6d | 2010-06-23 A | 2010-07-03 A | 8250DW1800 SS+2.2d | 100% | 2010-07-28 | 2010-08-04 |  |  | CONS | 2560 |
| 8250DW1160 |  | DW Toe Grouting |  | 110d | 2010-06-26 A | 2010-07-24 A | 8250DW1140 FF, 8250DW2080 SS+5.5d, 8250DW2060 FF+5.5d | 100% | 2010-05-03 | 2010-09-10 |  | Concrete [2340 m3]; Grouting Machine [167 h] | CONS | 2560 |
| 8250DW1800 |  | DW Panel No. 44 - Stage 2 Exc |  | 6.6d | 2010-07-02 A | 2010-07-08 A | 8250DW1720 SS+2.2d | 100% | 2010-07-26 | 2010-08-02 |  |  | CONS | 2560 |
| 8250DW1900 |  | DW Panel No. 40 - Stage 3 Exc |  | 6.6d | 2010-07-02 A | 2010-07-08 A | 8250DW1860 SS+2.2d | 100% | 2010-08-23 | 2010-08-30 |  |  | CONS | 2560 |
| 8250DW1980 |  | DW Panel No. 2 - Stage 1 Exc |  | 6.6d | 2010-07-02 A | 2010-07-29 A | 8250DW1700 SS+3.3d | 100% | 2010-07-21 | 2010-07-28 |  |  | CONS | 2560 |
| 8250DW1460 |  | DW Panel No. 23 - Stage 1 Exc |  | 6.6d | 2010-07-03 A | 2010-07-30 A | 8250DW1440 SS+2.2d | 100% | 2010-06-03 | 2010-06-10 |  |  | CONS | 2560 |
| 8250DW1480 |  | DW Panel No. 27 - Stage 1 Exc |  | 6.6d | 2010-07-07 A | 2010-07-13 A | 8250DW1460 SS+3.3d | 100% | 2010-06-07 | 2010-06-14 |  |  | CONS | 2560 |
| 8250DW1640 |  | DW Panel No. 6 - Stage 1 Exc |  | 6.6d | 2010-07-08 A | 2010-07-20 A | 8250DW1620 SS+3.3d | 100% | 2010-07-07 | 2010-07-14 |  |  | CONS | 2560 |
| 8250DW1680 |  | DW Panel No. 11 - Stage 1 Exc |  | 6.6d | 2010-07-08 A | 2010-07-14 A | 8250DW1660 SS+3.3d | 100% | 2010-07-14 | 2010-07-21 |  |  | CONS | 2560 |
| 8250DW1920 |  | DW Panel No. 45 - Stage 2 Exc |  | 6.6d | 2010-07-10 A | 2010-07-24 A | 8250DW1880 SS+2.2d | 100% | 2010-08-02 | 2010-08-09 |  |  | CONS | 2560 |
| 8250DW1660 |  | DW Panel No. 3 - Stage 1 Exc |  | 6.6d | 2010-07-11 A | 2010-07-22 A | 8250DW1640 SS+3.3d | 100% | 2010-07-10 | 2010-07-17 |  |  | CONS | 2560 |
| 8250DW2020 |  | DW Panel No. 46 - Stage 2 Exc |  | 6.6d | 2010-07-12 A | 2010-07-31 A | 8250DW2000 SS+2.2d | 100% | 2010-08-09 | 2010-08-16 |  |  | CONS | 2560 |
| 8250DW1580 |  | DW Panel No. 22 - Stage 1 Exc |  | 6.6d | 2010-07-19 A | 2010-08-28 A | 8250DW1560 SS+3.3d | 100% | 2010-06-25 | 2010-07-03 |  |  | CONS | 2560 |
| 8250DW1880 |  | DW Panel No. 30 - Stage 2 Exc |  | 6.6d | 2010-07-27 A | 2010-08-08 A | 8250DW1820 SS+2.2d | 100% | 2010-07-30 | 2010-08-06 |  |  | CONS | 2560 |
| 8250DW1960 |  | DW Panel No. 43 - Stage 2 Exc |  | 6.6d | 2010-08-01 A | 2010-08-13 A | 8250DW1920 SS+2.2d | 100% | 2010-08-04 | 2010-08-11 |  |  | CONS | 2560 |
| 8250DW2000 |  | DW Panel No. 33 - Stage 2 Exc |  | 6.6d | 2010-08-04 A | 2010-08-15 A | 8250DW1960 SS+2.2d | 100% | 2010-08-06 | 2010-08-13 |  |  | CONS | 2560 |
| 8250DW1740 |  | DW Panel No. 38 - Stage 3 Exc |  | 6.6d | 2010-08-10 A | 2010-08-20 A | 8250DW2020 SS+2.2d | 100% | 2010-08-11 | 2010-08-18 |  |  | CONS | 2560 |
| 8250DW1760 |  | DW Panel No. 41 - Stage 3 Exc |  | 6.6d | 2010-08-12 A | 2010-08-22 A | 8250DW1740 SS+2.2d | 100% | 2010-08-13 | 2010-08-20 |  |  | CONS | 2560 |
| 8250DW1940 |  | DW Panel No. 37 - Stage 3 Exc |  | 6.6d | 2010-08-18 A | 2010-09-04 A | 8250DW1900 SS+2.2d | 100% | 2010-08-25 | 2010-09-01 |  |  | CONS | 2560 |
| 8250DW1780 |  | DW Panel No. 35 - Stage 3 Exc |  | 6.6d | 2010-08-19 A | 2010-08-25 A | 8250DW1760 SS+2.2d | 100% | 2010-08-16 | 2010-08-23 |  |  | CONS | 2560 |
| 8250DW2040 |  | DW Panel No. 42 - Stage 3 Exc |  | 6.6d | 2010-08-27 A | 2010-09-03 A | 8250DW1940 SS+2.2d | 100% |  |  |  |  | CONS | 2560 |
| 8250DW2060 |  | DW Panel No. 34 - Stage 3 Exc |  | 6.6d | 2010-08-30 A | 2010-09-06 A | 8250DW2040 SS+2.2d | 100% |  |  |  |  | CONS | 2560 |
| 8250DW1860 |  | DW Panel No. 36 - Stage 3 Exc |  | 6.6d | 2010-09-11 A | 2010-09-22 A | 8250DW1840 SS+2.2d | 100% | 2010-08-20 | 2010-08-27 |  |  | CONS | 2560 |
| 8250DW1840 |  | DW Panel No. 39 - Stage 3 Exc |  | 5.5d | 2010-09-20 A | 2010-09-30 A | 8250DW1780 SS+2.2d | 100% | 2010-08-18 | 2010-08-24 |  |  | CONS | 2560 |

| ID | WBS | Activity | Duration | Start | Finish | Predecessors | Complete | Planned start | Planned finish | Resources | 825 Phase | 825 Location |
| --- | --- | --- | --- | --- | --- | --- | --- | --- | --- | --- | --- | --- |
|  | 2 | **DEWATERING WORKS** |  | 2010-08-02 | 2011-03-26 |  |  |  |  |  |  |  |
| 8250ELS100 |  | Pumping Wells Installation | 12d | 2010-08-02 A | 2010-10-28 A | 8250SM4780 | 100% | 2010-06-11 | 2010-06-26 | Drilling Rig [264 h] | CONS | 2560 |
| 8250ELS160 |  | Stage 1 (0 to 64.2m from South DW fFce), Dewater to +2.0 mPD, Exc from +5.0 to +2.5 mPD, L1 Struts at +3.0 mPD | 17.6d | 2010-08-18 A | 2010-09-04 A | 8250DA1480, 8250ELS100, 8250DA2500, 8250DA1360, 8250SM4660, 8250DW1980, 8250SM3140, 8250SE1260, 8250DA2380 | 100% | 2010-08-18 | 2010-09-07 |  | CONS | 2560 |
| 8250ELS180 |  | Stage 1 (0 to 64.2m from South DW Face), Dewater to -3.0 mPD, Exc from +2.5 to -2.5 mPD, L2 Struts at -2.0 mPD | 19.8d | 2010-09-06 A | 2010-09-27 A | 8250ELS160 | 100% | 2010-09-06 | 2010-09-29 |  | CONS | 2560 |
| 8250ELS340 |  | Stage 2 (0 to 95.4m from South DW Face), Dewater to +2.0 mPD, Exc from +5.0 to +2.5 mPD, L1 Struts at +3.0 mPD | 7.7d | 2010-09-06 A | 2010-09-13 A | 8250DW2020, 8250DC1140, 8250ELS160 | 100% | 2010-09-06 | 2010-09-14 |  | CONS | 2560 |
| 8250ELS540 |  | Stage 3 (Remaining), Dewater to +2.0 mPD, Exc from +5.0 to +2.5 mPD, L1 Struts at +3.0 mPD | 6.6d | 2010-09-14 A | 2010-09-20 A | 8250DW1160, 8250DW2060, 8250ELS340 | 100% | 2010-09-14 | 2010-09-21 |  | CONS | 2560 |
| 8250ELS200 |  | Stage 1 (0 to 64.2m from South DW Face), Dewater to -8.0 mPD, Exc from -2.5 to -7.5 mPD, L3 Struts at -7.0 mPD | 18.7d | 2010-09-28 A | 2010-10-19 A | 8250ELS180 | 100% | 2010-09-28 | 2010-10-21 |  | CONS | 2560 |
| 8250ELS360 |  | Stage 2 (0 to 95.4m from South DW Face), Dewater to -3.0 mPD, Exc from +2.5 to -2.5 mPD, L2 Struts at -2.0 mPD | 11d | 2010-09-28 A | 2010-10-09 A | 8250ELS340, 8250ELS180 | 100% | 2010-09-28 | 2010-10-11 |  | CONS | 2560 |
| 8250ELS560 |  | Stage 3 (Remaining), Dewater to -3.0 mPD, Exc from +2.5 to -2.5 mPD, L2 Struts at -2.0 mPD | 8.8d | 2010-10-11 A | 2010-10-20 A | 8250ELS360, 8250ELS540 | 100% | 2010-10-11 | 2010-10-21 |  | CONS | 2560 |
| 8250ELS220 |  | Stage 1 (0 to 64.2m from South DW Face), Dewater to -10.5 mPD, Exc from -7.5 to -10.0 mPD, L3a Struts at -9.5 mPD | 14.3d | 2010-10-20 A | 2010-11-03 A | 8250ELS200 | 100% | 2010-10-20 | 2010-11-05 |  | CONS | 2560 |
| 8250ELS380 |  | Stage 2 (0 to 95.4m from South DW Face), Dewater to -8.0 mPD, Exc from -2.5 to -7.5 mPD, L3 Struts at -7.0 mPD | 12.1d | 2010-10-20 A | 2010-11-01 A | 8250ELS200, 8250ELS360 | 100% | 2010-10-20 | 2010-11-03 |  | CONS | 2560 |
| 8250ELS580 |  | Stage 3 (Remaining), Dewater to -8.0 mPD, Exc from -2.5 to -7.5 mPD, L3 Struts at -7.0 mPD | 13.2d | 2010-11-02 A | 2010-11-15 A | 8250ELS380, 8250ELS560 | 100% | 2010-11-02 | 2010-11-17 |  | CONS | 2560 |
| 8250ELS240 |  | Stage 1 (0 to 64.2m from South DW Face), Dewater to -12.5 mPD, Exc from -10.0 to -12.0 mPD, L4 Struts at -11.5 mPD | 12.1d | 2010-11-04 A | 2010-11-16 A | 8250ELS220 | 100% | 2010-11-04 | 2010-11-18 |  | CONS | 2560 |
| 8250ELS260 |  | Stage 1 (0 to 64.2m from South DW Face), Dewater to -15.0 mPD, Exc from -12.0 to -14.5 mPD, L4a Struts at -14.0 mPD | 13.2d | 2010-11-17 A | 2010-11-30 A | 8250ELS240 | 100% | 2010-11-17 | 2010-12-02 |  | CONS | 2560 |
| 8250ELS400 |  | Stage 2 (0 to 95.4m from South DW Face), Dewater to -12.5 mPD, Exc from -7.5 to -12.0 mPD, L4 Struts at -11.5 mPD | 12.1d | 2010-11-17 A | 2010-11-29 A | 8250ELS380, 8250ELS240 | 100% | 2010-11-17 | 2010-12-01 |  | CONS | 2560 |
| 8250ELS600 |  | Stage 3 (Remaining),Dewater to -12.5 mPD, Exc from -7.5 to -12.0 mPD, L4 Struts at -11.5 mPD | 14.3d | 2010-11-30 A | 2010-12-14 A | 8250ELS400, 8250ELS580 | 100% | 2010-11-30 | 2010-12-16 |  | CONS | 2560 |
| 8250ELS280 |  | Stage 1 (0 to 64.2m from South DW Face), Dewater to -17.0 mPD, Exc from -14.5 to -16.5 mPD, L5 Struts at -16.0 mPD | 12.1d | 2010-12-01 A | 2010-12-13 A | 8250ELS260, 8250ID12 | 100% | 2010-12-01 | 2010-12-15 |  | CONS | 2560 |
| 8250ELS420 |  | Stage 2 (0 to 95.4m from South DW Face), Dewater to -15.0 mPD, Exc from -12.0 to -14.5 mPD, L4a Struts at -14.0 mPD | 7.7d | 2010-12-01 A | 2010-12-08 A | 8250ELS400, 8250ELS260 | 100% | 2010-12-01 | 2010-12-09 |  | CONS | 2560 |
| 8250ELS300 |  | Stage 1 (0 to 64.2m from South DW Face), Dewater to -22.0 mPD, Exc from -16.5 to -21.5 mPD, L6 Struts at -21.0 mPD | 13.2d | 2010-12-14 A | 2010-12-29 A | 8250ELS280 | 100% | 2010-12-14 | 2010-12-31 |  | CONS | 2560 |
| 8250ELS440 |  | Stage 2 (0 to 95.4m from South DW Face), Dewater to -17.0 mPD, Exc from -14.5 to -16.5 mPD, L5 Struts at -16.0 mPD | 8.8d | 2010-12-14 A | 2010-12-22 A | 8250ELS280, 8250ELS420 | 100% | 2010-12-14 | 2010-12-23 |  | CONS | 2560 |
| 8250ELS620 |  | Stage 3 (Remaining),Dewater to -16.0 mPD, Exc from -12.0 to -15.5 mPD, L5 Struts at -15.0 mPD | 12.1d | 2010-12-23 A | 2011-01-07 A | 8250ELS600, 8250ELS440 | 100% | 2010-12-23 | 2011-01-10 |  | CONS | 2560 |
| 8250ELS320 |  | Stage 1 (0 to 64.2m from South DW Face), Dewater to -26.0 mPD, Exc from -21.5 to L9 -25.5 mPD | 5.5d | 2010-12-30 A | 2011-01-05 A | 8250ELS300 | 100% | 2010-12-30 | 2011-01-06 |  | CONS | 2560 |
| 8250ELS460 |  | Stage 2 (0 to 95.4m from South DW Face), Dewater to -22.0 mPD, Exc from -16.5 to -21.5 mPD, L6 Struts at -21.0 mPD | 13.2d | 2010-12-30 A | 2011-01-13 A | 8250ELS300, 8250ELS440 | 100% | 2010-12-30 | 2011-01-15 |  | CONS | 2560 |
| 8250ELS640 |  | Stage 3 (Remaining), Dewater to -17.0 mPD, Exc from -15.5 to -16.5 mPD, L5 Struts at -16.0 mPD | 5.5d | 2011-01-08 A | 2011-01-13 A | 8250ELS620, 8250ELS440 | 100% | 2011-01-08 | 2011-01-14 |  | CONS | 2560 |
| 8250ELS480 |  | Stage 2 (0 to 95.4m from South DW Face), Dewater to -26.0 mPD, Exc from -21.5 to -25.5 mPD, L7 Struts at -25.0 mPD | 13.2d | 2011-01-14 A | 2011-01-27 A | 8250ELS460, 8250ELS320 | 100% | 2011-01-14 | 2011-01-29 |  | CONS | 2560 |
| 8250ELS660 |  | Stage 3 (Remaining), Dewater to -21.0 mPD, Exc from -16.5 to -20.5 mPD, L6 Struts at -20.0 mPD | 14.3d | 2011-01-14 A | 2011-01-28 A | 8250ELS640, 8250ELS460 | 100% | 2011-01-14 | 2011-01-31 |  | CONS | 2560 |
| 8250ELS500 |  | Stage 2 (0 to 95.4m from South DW Face), Dewater to -30.0 mPD, Exc from -25.5 to -29.5 mPD | 6.6d | 2011-01-28 A | 2011-02-07 A | 8250ELS480 | 100% | 2011-01-28 | 2011-02-08 |  | CONS | 2560 |
| 8250ELS680 |  | Stage 3 (Remaining), Dewater to -22.0 mPD, Exc from -20.5 to -21.5 mPD, L6 Struts at -21.0 mPD | 7.7d | 2011-01-29 A | 2011-02-09 A | 8250ELS460, 8250ELS660 | 100% | 2011-01-29 | 2011-02-10 |  | CONS | 2560 |
| 8250ELS700 |  | Stage 3 (Remaining), Dewater to -24.0 mPD, Exc from -21.5 to -23.5 mPD, L6a Struts at -23.0 mPD | 11d | 2011-02-10 A | 2011-02-21 A | 8250ELS680, 8250ELS480 | 100% | 2011-02-10 | 2011-02-22 |  | CONS | 2560 |
| 8250ELS720 |  | Stage 3 (Remaining), Dewater to -26.0 mPD, Exc from -23.5 to -25.5 mPD, L7 Struts at -25.0 mPD | 14.3d | 2011-02-22 A | 2011-03-09 A | 8250ELS700, 8250ELS480 | 100% | 2011-02-22 | 2011-03-11 |  | CONS | 2560 |
| 8250ELS740 |  | Stage 3 (Remaining), Dewater to -29.0 mPD, Exc from -25.5 to -28.5 mPD, L7a Struts at -28.0 mPD | 11d | 2011-03-10 A | 2011-03-21 A | 8250ELS720, 8250ELS500 | 100% | 2011-03-10 | 2011-03-22 |  | CONS | 2560 |
| 8250ELS760 |  | Stage 3 (Remaining), Dewater to -31.9 mPD, Exc from -28.5 to -31.4 mPD | 5.5d | 2011-03-22 A | 2011-03-26 A | 8250ELS740 | 100% | 2011-03-22 | 2011-03-28 |  | CONS | 2560 |

| ID | WBS | Activity | Type | Duration | Start | Finish | Predecessors | Complete | Planned start | Planned finish | Calendar | Resources | 825 Phase | 825 Location | 825 Sub-location |
| --- | --- | --- | --- | --- | --- | --- | --- | --- | --- | --- | --- | --- | --- | --- | --- |
|  | 3 | **BORED TUNNEL SOUTH BOUND** |  |  | 2010-11-10 | 2014-10-11 |  |  |  |  |  |  |  |  |  |
|  | 1 | **TBM** |  |  | 2010-11-10 | 2014-09-30 |  |  |  |  |  |  |  |  |  |
| 8250SB1020 |  | Erect 11KV Transformer Room for TBM Operation |  | 24d | 2010-11-10 A | 2010-12-17 A | 8250SE1240 | 100% | 2010-07-23 | 2010-08-20 |  | Concrete [15 m3]; Lorry Crane [22 h]; Drilling Rig [22 h] | CONS | 2570 | TBM |
| 8250SB1040 |  | CLP Cabling and Installation |  | 60d | 2010-12-20 A | 2011-03-10 A | 8250SB1020 | 100% | 2010-08-20 | 2010-11-02 |  | Lorry Crane [660 h]; Drilling Rig [264 h] | CONS | 2570 | TBM |
| 8250SB1000 |  | Geotechnical Site Investigation along Tunnel Alignment prior to Tunneling |  | 48d | 2011-02-14 A | 2012-12-15 A | 8250SM3940 | 100% | 2010-08-16 | 2010-10-12 |  | General Labor (Crew of 4) [2112 h]; Survey team (crew of 4) [2112 h]; Drilling Rig [1056 h]; Lorry Crane [105 h] | CONS | 2570 | TBM |
| 8250SB1060 |  | 11KV Transformer Room Energized | milestone | 0d | 2011-03-10 A | 2011-03-10 A | 8250SB1040 FF | 100% | 2010-10-19 | 2010-10-19 | 825_7-day w/o holidays |  | CONS | 2570 | TBM |
| 8250SB1080 |  | Gantry Crane Foundation |  | 19.8d | 2011-05-05 A | 2012-01-07 A | 8250ELS530 | 100% | 2011-01-21 | 2011-02-16 |  | Carpenter [792 h]; Lorry Crane [20 h]; Drilling Rig [22 h]; Concrete [250 m3]; General Labor (Crew of 4) [792 h]; Concretors [792 h]; Electrician [396 h]; Steel & Rebar skilled worker (crew of 4) [792 h]; General Labor (crew of 4) [792 h] | CONS | 2570 | TBM |
| 8250SB1140 |  | TBM Cradle |  | 6d | 2011-06-04 A | 2011-06-15 A | 8250SB1120 SS, 8250ID01 | 100% | 2011-03-01 | 2011-03-08 |  | Gantry Crane [66 h]; Welding Machine [66 h]; TBM General Support crew (Shift 1 - crew of 10) [660 h]; TBM specialists crew (Shift 1 - crew of 5) [330 h] | CONS | 2570 | TBM |
| 8250SB1120 |  | Entrance Concrete and Packing |  | 6d | 2011-06-06 A | 2011-06-21 A | 8250SB1100, 8250ELS530 | 100% | 2011-03-01 | 2011-03-08 |  | General Labor (Crew of 4) [264 h]; Carpenter [264 h]; Concretors [264 h]; Steel & Rebar skilled worker (crew of 4) [264 h]; Concrete Pump [1 h]; Concrete [2 m3] | CONS | 2570 | TBM |
| 8250SB1200 |  | Erect Muck Disposal Pit |  | 21d | 2011-06-06 A | 2011-08-03 A | 8250SB1280 SS | 100% | 2011-03-21 | 2011-04-14 |  | Concretors [924 h]; Steel & Rebar skilled worker (crew of 4) [924 h]; Lorry Crane [42 h]; Welding Machine [150 h]; General Labor (Crew of 4) [924 h]; Carpenter [924 h] | CONS | 2570 | TBM |
| 8250SB1160 |  | TBM Assembly on Ground Level |  | 12d | 2011-06-07 A | 2011-06-21 A | 8250SB1140 SS, 8250TBM320, 8250TBM180 FF | 100% | 2011-03-01 | 2011-03-15 |  | TBM General Support crew (Shift 1 - crew of 10) [1320 h]; TBM General Support crew (Shift 2 - crew of 10) [1320 h]; Welding Machine [132 h]; Lorry Crane [132 h]; TBM specialists crew (Shift 1 - crew of 5) [660 h]; TBM specialists crew (Shift 2 - crew of 5) [660 h]; General Labor (Crew of 4) [528 h] | CONS | 2570 | TBM |
| 8250SB1180 |  | TBM Assembly Down the Shaft |  | 12d | 2011-06-16 A | 2011-08-21 A | 8250SB1160 SS, 8250SB1140 | 100% | 2011-03-09 | 2011-03-22 |  | TBM General Support crew (Shift 1 - crew of 10) [1320 h]; TBM General Support crew (Shift 2 - crew of 10) [1320 h]; TBM specialists crew (Shift 1 - crew of 5) [660 h]; TBM specialists crew (Shift 2 - crew of 5) [660 h]; General Labor (Crew of 4) [528 h]; Welding Machine [132 h]; Gantry Crane [132 h] | CONS | 2570 | TBM |
| 8250SB1260 |  | Thrust Block and Temp Segments |  | 9d | 2011-08-05 A | 2011-08-31 A | 8250SB1240 | 100% | 2011-04-04 | 2011-04-14 |  | TBM General Support crew (Shift 1 - crew of 10) [990 h]; TBM General Support crew (Shift 2 - crew of 10) [990 h]; TBM specialists crew (Shift 1 - crew of 5) [495 h]; TBM specialists crew (Shift 2 - crew of 5) [495 h]; General Labor (Crew of 4) [396 h]; Gantry Crane [132 h]; Segment Ring [7 Nos]; Welding Machine [132 h] | CONS | 2570 | TBM |
| 8250SB1220 |  | Erect Backfill Grout Material Batching Plant |  | 21d | 2011-08-15 A | 2011-08-27 A | 8250SB1160 | 100% | 2011-03-21 | 2011-04-14 |  | Welding Machine [150 h]; Lorry Crane [42 h]; General Labor (Crew of 4) [924 h]; Carpenter [924 h]; Concretors [924 h]; Steel & Rebar skilled worker (crew of 4) [924 h] | CONS | 2570 | TBM |
| 8250SB1240 |  | TBM Final Assembly and Test for Launching |  | 10d | 2011-08-22 A | 2011-08-27 A | 8250SB1160, 8250SB1060, 8250SB1180 | 100% | 2011-03-23 | 2011-04-02 |  | TBM General Support crew (Shift 1 - crew of 10) [1100 h]; TBM General Support crew (Shift 2 - crew of 10) [1100 h]; TBM specialists crew (Shift 1 - crew of 5) [550 h]; TBM specialists crew (Shift 2 - crew of 5) [550 h]; General Labor (Crew of 4) [440 h]; General Labor (crew of 4) [440 h]; Tunnel Carpenter (crew of 4) [440 h]; Scaffolders in Tunnel (crew of 6) [660 h]; Tunnel Concrete Workers (Crew of 4) [440 h]; Tunnel Steel & Rebar Workers (crew of 4) [440 h]; Gantry Crane [99 h]; Welding Machine [99 h] | CONS | 2570 | TBM |
| 8250SB1280 |  | TBM Initial Drive on SB Tunnel |  | 50d | 2011-09-07 A | 2011-11-11 A | 8250SM5520, 8250SB1260, 8250SB1000, 8250SM4060, 8250SM4180, 8250SM3020, 8250SM5400, 8250SM5280, 8250GT1060, 8250IN1040, 8250SB1220 | 100% | 2011-04-15 | 2011-06-18 |  | Scaffolders in Tunnel (crew of 6) [3300 h]; Concrete [360 m3]; Concrete Pump [28 h]; Gantry Crane [308 h]; Muck Car [308 h]; General Labor (Crew of 4) [2200 h]; General Labor (crew of 4) [2200 h]; Tunnel Carpenter (crew of 4) [2200 h]; Tunnel Concrete Workers (Crew of 4) [2200 h]; Tunnel Steel & Rebar Workers (crew of 4) [2200 h]; Locomotive [308 h]; Segment Ring [50 Nos]; Spoil - TBM Excavated Material [6022 m3]; TBM General Support crew (Shift 1 - crew of 10) [5500 h]; TBM General Support crew (Shift 2 - crew of 10) [5500 h]; TBM specialists crew (Shift 1 - crew of 5) [2750 h]; TBM specialists crew (Shift 2 - crew of 5) [2750 h] | CONS | 2570 | TBM |
| 8250SB1300 |  | Temp Staging, Back-up Cars, Conveyor Belt & Segment Hoist Installation |  | 34d | 2011-11-12 A | 2011-12-21 A | 8250SB1280, 8250SB1200, 8250ID06 | 100% | 2011-11-11 | 2011-12-20 |  | General Labor (Crew of 4) [1496 h]; Carpenter [1496 h]; Concretors [1496 h]; Electrician [748 h]; Steel & Rebar skilled worker (crew of 4) [1496 h]; Skilled Scaffolder (crew of 6) [2244 h]; Pipes and Piping Skilled labors (crew of 2) [748 h]; Welding Machine [110 h]; Gantry Crane [110 h] | CONS | 2570 | TBM |
| 8250SB1100 |  | Erect Gantry Crane |  | 12d | 2012-01-06 A | 2012-02-09 A | 8250SB1080 | 100% | 2011-02-15 | 2011-02-28 |  | Welding Machine [132 h]; Skilled Scaffolder (crew of 6) [792 h]; General Labor (Crew of 4) [528 h]; Concretors [528 h]; Electrician [264 h]; Pipes and Piping Skilled labors (crew of 2) [264 h]; Lorry Crane [24 h] | CONS | 2570 | TBM |
| 8250SB1540 |  | Disassemble and Removal of TBM through the Completed SB Tunnel |  | 51d | 2013-08-01 A | 2013-11-30 A | 8250SB1580 SS | 100% | 2013-10-01 | 2013-11-20 | 825_7-day w/o holidays | TBM General Support crew (Shift 1 - crew of 10) [5100 h]; TBM General Support crew (Shift 2 - crew of 10) [5100 h]; TBM specialists crew (Shift 2 - crew of 5) [2550 h]; General Labor (Crew of 4) [2040 h]; General Labor (crew of 4) [2040 h]; Scaffolders in Tunnel (crew of 6) [3060 h]; 500T Lifting Crane [390 h]; TBM specialists crew (Shift 1 - crew of 5) [2550 h] | CONS | 2570 | TBM |
| 8250SB1580 |  | Removal of Back-up Cars through the Completed SB Tunnel |  | 29d | 2013-08-01 A | 2013-09-21 A | 8250SB1330 FS-1d | 100% | 2013-05-31 | 2013-07-05 |  | General tunnel worker (Shift 1 - crew of 10) [3625 h]; General tunnel worker (Shift 2 - crew of 10) [3625 h]; TBM General Support crew (Shift 1 - crew of 10) [3625 h]; Crawler Crane [290 h]; 500T Lifting Crane [290 h] | CONS | 2570 | TBM |
| 8250CC10170 |  | Removal of Rails, Sleepers, Cables, Brackets & Make Good; (For South Bound) |  | 25d | 2014-02-20 A | 2014-08-31 A | 8250SB1330, 8250SB1604 SS | 100% | 2014-12-31 | 2015-01-29 |  |  | CONS | 2570 | TBM |
| 8250CC10210 |  | Cleaning and Make Good for SB Tunnels |  | 25d | 2014-09-01 A | 2014-09-30 A | 8250CC10170 SS | 100% | 2014-12-31 | 2015-01-29 |  |  |  |  |  |
|  | 2 | **TUNNEL** |  |  | 2011-12-22 | 2014-10-11 |  |  |  |  |  |  |  |  |  |
| 8250SB1320 |  | TBM Main Drive on SB Tunnel Heading South | level of effort | 263d | 2011-12-22 A | 2013-07-31 A | 8250SB1322 SS | 100% | 2012-07-31 | 2013-06-18 |  | Lining Segment installation crew (Shift 1 - crew of 4) [11572 h]; Lining Segment installation crew (Shift 2 - crew of 4) [11572 h]; TBM General Support crew (Shift 1 - crew of 10) [28930 h]; TBM General Support crew (Shift 2 - crew of 10) [28930 h]; TBM specialists crew (Shift 1 - crew of 5) [14465 h]; TBM specialists crew (Shift 2 - crew of 5) [14465 h]; Tunnel Carpenter (crew of 4) [11572 h]; Scaffolders in Tunnel (crew of 6) [17358 h]; Tunnel Steel & Rebar Workers (crew of 4) [11572 h]; General tunnel worker (Shift 1 - crew of 10) [28930 h]; General tunnel worker (Shift 2 - crew of 10) [28930 h]; General Labor (Crew of 4) [11572 h]; General Labor (crew of 4) [11572 h]; Locomotive [2893 h]; Muck Car [2893 h]; Gantry Crane [2893 h]; Dump Truck [2893 h]; Crawler Crane [2893 h]; Tunnel Concrete Workers (Crew of 4) [11572 h] | CONS | 2570 | TNN |
| 8250SB1322 |  | TBM Main Drive on SB Tunnel Heading South - Phase 1 |  | 60d | 2011-12-22 A | 2012-02-19 A | 8250SB1300, 8250SWMP0150 | 100% | 2013-02-28 | 2013-05-13 |  |  | CONS | 2570 | TNN |
| 8250SB1324 |  | TBM Main Drive on SB Tunnel Heading South - Phase 2 |  | 60d | 2012-02-20 A | 2012-04-19 A | 8250SB1322 | 100% | 2013-04-23 | 2013-07-05 |  |  | CONS | 2570 | TNN |
| 8250SB1340 |  | Pass SB CP7 + 300m | milestone | 0d | 2012-04-05 A | 2012-04-05 A | 8250SB1322 FF | 100% | 2012-12-21 | 2012-12-21 | 825_7-day w/o holidays |  | CONS | 2570 | TNN |
| 8250SB1326 |  | TBM Main Drive on SB Tunnel Heading South - Phase 3 |  | 60d | 2012-04-20 A | 2012-06-18 A | 8250SB1324 | 100% | 2013-06-17 | 2013-08-27 |  |  | CONS | 2570 | TNN |
| 8250SB1362 |  | CNP of 24 Hr Working for Tunnelling Work Availed | milestone | 0d | 2012-05-16 A | 2012-05-16 A | 8250SB1324 | 100% | 2011-12-21 | 2011-12-21 | 825_7-day w/o holidays |  | CONS | 2570 | TNN |
| 8250SB1364 |  | Commnece of 24 Hr Working for Tunnelling Work | milestone | 0d | 2012-05-29 A | 2012-05-29 A | 8250SB1362 | 100% | 2011-12-21 | 2011-12-21 | 825_7-day w/o holidays |  | CONS | 2570 | TNN |
| 8250SB1328 |  | TBM Main Drive on SB Tunnel Heading South - Phase 4 |  | 60d | 2012-06-19 A | 2012-08-17 A | 8250SB1326, 8250SB1364 | 100% | 2013-08-10 | 2013-10-23 |  |  | CONS | 2570 | TNN |
| 8250SB1360 |  | Pass SB CP8 + 300m | milestone | 0d | 2012-06-26 A | 2012-06-26 A | 8250SB1322 | 100% | 2013-01-30 | 2013-01-30 | 825_7-day w/o holidays |  | CONS | 2570 | TNN |
| 8250SB1330 |  | TBM Main Drive on SB Tunnel Heading South - Phase 5 |  | 49d | 2012-08-17 A | 2013-07-31 A | 8250SB1328, 8250SB1320 FF | 100% | 2013-10-04 | 2013-12-02 |  |  | CONS | 2570 | TNN |
| 8250SB1380 |  | Pass SB CP9 + 300m | milestone | 0d | 2012-11-20 A | 2012-11-20 A | 8250SB1322 | 100% | 2012-11-30 | 2012-11-30 | 825_7-day w/o holidays |  | CONS | 2570 | TNN |
| 8250SB1400 |  | Pass SB CP10 + 300m | milestone | 0d | 2012-12-25 A | 2012-12-25 A | 8250SB1324 | 100% | 2013-01-05 | 2013-01-05 | 825_7-day w/o holidays |  | CONS | 2570 | TNN |
| 8250SB1640 |  | 6 Months Advance Notice to 846 for Supply of Tunnel Brackets | milestone | 0d | 2012-12-31 A | 2012-12-31 A | 8250SB1322 | 100% | 2013-01-31 | 2013-01-31 | 825_7-day w/o holidays |  | CONS | 2570 | TNN |
| 8250SB1420 |  | Pass SB CP11 + 300m | milestone | 0d | 2013-01-15 A | 2013-01-15 A | 8250SB1326 | 100% | 2013-01-31 | 2013-01-31 | 825_7-day w/o holidays |  | CONS | 2570 | TNN |
| 8250SB1440 |  | Pass SB CP12 + 300m | milestone | 0d | 2013-02-15 A | 2013-02-15 A | 8250SB1326 | 100% | 2013-02-14 | 2013-02-14 | 825_7-day w/o holidays |  | CONS | 2570 | TNN |
| 8250SB1460 |  | Pass SB CP13 + 300m | milestone | 0d | 2013-03-29 A | 2013-03-29 A | 8250SB1328 | 100% | 2013-03-24 | 2013-03-24 | 825_7-day w/o holidays |  | CONS | 2570 | TNN |
| 8250SB1480 |  | Pass SB CP14 + 300m | milestone | 0d | 2013-05-17 A | 2013-05-17 A | 8250SB1460, 8250SB1328 | 100% | 2013-05-05 | 2013-05-05 | 825_7-day w/o holidays |  | CONS | 2570 | TNN |
| 8250SB1500 |  | Pass SB CP15 + 200m | milestone | 0d | 2013-07-14 A | 2013-07-14 A | 8250SB1480, 8250SB1330 | 100% | 2013-05-25 | 2013-05-25 | 825_7-day w/o holidays |  | CONS | 2570 | TNN |
| 8250SB1590 |  | Sprayed Concrete Lining for Stud Tunnel |  | 21d | 2013-10-16 A | 2013-10-21 A | 8250SB1540 FS-37d | 100% | 2013-10-15 | 2013-11-07 |  | Scaffolders in Tunnel (crew of 6) [1575 h]; Tunnel Concrete Workers (Crew of 4) [1050 h]; Tunnel Steel & Rebar Workers (crew of 4) [1050 h]; General Labor (Crew of 4) [1050 h]; Tunnel Carpenter (crew of 4) [1050 h]; Concrete Pump [210 h]; Grouting Machine [210 h] | CONS | 2570 | TNN |
| 8250SB1622 |  | Install Brackets (Supply by 846) - (1st 654 Rings) - SB |  | 40d | 2014-06-22 A | 2014-07-31 A | 8250SB1602, 8250SB1640 | 100% | 2014-11-18 | 2015-01-06 |  |  | CONS | 2570 | TNN |
| 8250SB1624 |  | Install Brackets (Supply by 846) - (Approx. 100 Rings remaining) - SB |  | 25d | 2014-09-01 A | 2014-10-11 A | 8250CC10210 SS, 8250SB1622 | 100% | 2014-09-01 | 2014-09-30 |  |  | CONS | 2570 | TNN |

| ID | WBS | Activity | Duration | Start | Finish | Predecessors | Complete | Planned start | Planned finish | Resources | 825 Phase | 825 Location | 825 Sub-location |
| --- | --- | --- | --- | --- | --- | --- | --- | --- | --- | --- | --- | --- | --- |
|  | 3 | **INVERT SLABS AND WALKWAYS (SB)** |  | 2013-10-17 | 2014-09-30 |  |  |  |  |  |  |  |  |
|  | 1 | **SB INVERT SLABS** |  | 2013-10-17 | 2014-09-06 |  |  |  |  |  |  |  |  |
|  | 1 | **SB TUNNELS** |  | 2013-10-17 | 2014-01-07 |  |  |  |  |  |  |  |  |
| 8250SB1602 |  | 1st Stage Concrete for SB Bored Tunnel Invert Slabs | 77d | 2013-10-17 A | 2014-01-07 A | 8250SB1590 SS, 8250SB1330, 8250SB1540 FS-37d | 100% | 2013-10-15 | 2014-01-15 |  | CONS | 2570 | TNN |
|  | 2 | **SB CROSS PASSAGES** |  | 2014-07-07 | 2014-09-06 |  |  |  |  |  |  |  |  |
| 8250CP2020 |  | SB - Invert Slabs for Cross Passage - CP9 | 6d | 2014-07-07 A | 2014-07-17 A | 8250CP1150, 8250SB1380 | 100% | 2014-01-03 | 2014-01-09 |  |  |  |  |
| 8250CP2030 |  | SB - Invert Slabs for Cross Passage - CP10 | 6d | 2014-07-07 A | 2014-07-26 A | 8250CP1210, 8250SB1400 | 100% | 2014-02-20 | 2014-02-26 |  |  |  |  |
| 8250CP2060 |  | SB - Invert Slabs for Cross Passage - CP13 | 6d | 2014-07-28 A | 2014-07-31 A | 8250CP1385, 8250SB1460 | 100% | 2014-04-15 | 2014-04-24 |  |  |  |  |
| 8250CP2000 |  | SB - Invert Slabs for Cross Passage - CP7 | 6d | 2014-08-11 A | 2014-08-19 A | 8250CP1030, 8250SB1340 | 100% | 2014-09-01 | 2014-09-06 |  |  |  |  |
| 8250CP2040 |  | SB - Invert Slabs for Cross Passage - CP11 | 6d | 2014-08-15 A | 2014-08-19 A | 8250CP1270, 8250SB1420 | 100% | 2014-09-01 | 2014-09-06 |  |  |  |  |
| 8250CP2070 |  | SB - Invert Slabs for Cross Passage - CP14 | 6d | 2014-08-23 A | 2014-08-29 A | 8250CP1415, 8250SB1480 | 100% | 2014-09-01 | 2014-09-06 |  |  |  |  |
| 8250CP2010 |  | SB - Invert Slabs for Cross Passage - CP8 | 8d | 2014-08-25 A | 2014-09-02 A | 8250CP2050 SS, 8250CP1090, 8250SB1360 | 100% | 2014-09-01 | 2014-09-10 |  |  |  |  |
| 8250CP2050 |  | SB - Invert Slabs for Cross Passage - CP12 | 6d | 2014-09-01 A | 2014-09-06 A | 8250CP1330, 8250CP2070, 8250SB1440 | 100% |  |  |  |  |  |  |
| 8250CP2080 |  | SB - Invert Slabs for Cross Passage - CP15 | 6d | 2014-09-01 A | 2014-09-06 A | 8250CP1490, 8250SB1500 | 100% |  |  |  |  |  |  |
|  | 2 | **SB WALKWAYS** |  | 2014-07-07 | 2014-09-30 |  |  |  |  |  |  |  |  |
|  | 1 | **SB TUNNELS** |  | 2014-09-01 | 2014-09-30 |  |  |  |  |  |  |  |  |
| 8250CC10100 |  | 3rd Stage Concrete for SB Bored Tunnel Upper Walkways | 25d | 2014-09-01 A | 2014-09-30 A | 8250SB1604 SS | 100% |  |  | Tunnel Concrete Workers (Crew of 4) [1000 h]; Tunnel Steel & Rebar Workers (crew of 4) [1000 h]; Tunnel Carpenter (crew of 4) [1000 h]; Concrete Pump [250 h]; Grouting Machine [250 h]; General tunnel worker (Shift 1 - crew of 10) [2500 h]; Locomotive [250 h] | CONS | 2570 | TNN |
| 8250SB1604 |  | 2nd Stage Concrete for SB Bored Tunnel Walkways | 25d | 2014-09-01 A | 2014-09-30 A | 8250SB1602 FS+24d | 100% |  |  |  | CONS | 2570 | TNN |
|  | 2 | **SB CROSS PASSAGES** |  | 2014-07-07 | 2014-09-06 |  |  |  |  |  |  |  |  |
| 8250CP2110 |  | SB - Walkways for Cross Passage - CP9 | 6d | 2014-07-07 A | 2014-07-11 A | 8250CP2020 | 100% | 2014-09-08 | 2014-09-15 |  |  |  |  |
| 8250CP2120 |  | SB - Walkways for Cross Passage - CP10 | 6d | 2014-07-21 A | 2014-07-25 A | 8250CP2110 | 100% | 2014-09-08 | 2014-09-15 |  |  |  |  |
| 8250CP2150 |  | SB - Walkways for Cross Passage - CP13 | 6d | 2014-07-28 A | 2014-07-31 A | 8250CP2120 | 100% | 2014-09-08 | 2014-09-15 |  |  |  |  |
| 8250CP2130 |  | SB - Walkways for Cross Passage - CP11 | 6d | 2014-08-15 A | 2014-08-19 A | 8250CP2150 | 100% | 2014-09-08 | 2014-09-15 |  |  |  |  |
| 8250CP2090 |  | SB - Walkways for Cross Passage - CP7 | 6d | 2014-08-16 A | 2014-08-20 A | 8250CP2150 | 100% | 2014-09-08 | 2014-09-15 |  |  |  |  |
| 8250CP2160 |  | SB - Walkways for Cross Passage - CP14 | 6d | 2014-08-23 A | 2014-08-29 A | 8250CP2090 | 100% | 2014-09-08 | 2014-09-15 |  |  |  |  |
| 8250CP2100 |  | SB - Walkways for Cross Passage - CP8 | 6d | 2014-08-26 A | 2014-08-30 A | 8250CP2010 SS, 8250CP2090 | 100% | 2014-09-01 | 2014-09-06 |  |  |  |  |
| 8250CP2140 |  | SB - Walkways for Cross Passage - CP12 | 6d | 2014-09-01 A | 2014-09-06 A | 8250CP2050 SS, 8250CP2100 | 100% |  |  |  |  |  |  |
| 8250CP2170 |  | SB - Walkways for Cross Passage - CP15 | 6d | 2014-09-01 A | 2014-09-06 A | 8250CP2080 SS, 8250CP2100 | 100% |  |  |  |  |  |  |

Notes:
- 8250CP2020: Explanation: Partial/Entrance Portion @ / 1.185m Length
- 8250CP2030: Explanation: Partial/Entrance Portion @ / 1.185m Length
- 8250CP2060: Explanation: Partial/Entrance Portion @ / 1.185m Length
- 8250CP2000: Explanation: Partial/Entrance Portion @ / 1.185m Length only
- 8250CP2040: Explanation: Partial/Entrance Portion @ / 1.185m Length only
- 8250CP2070: Explanation: Partial/Entrance Portion @ / 1.185m Length only
- 8250CP2010: Explanation: Partial/Entrance Portion @ / 1.185m Length only
- 8250CP2050: Explanation: Partial/Entrance Portion @ / 1.185m Length only
- 8250CP2080: Explanation: Partial/Entrance Portion @ / 1.185m Length only

| ID | WBS | Activity | Type | Duration | Start | Finish | Predecessors | Complete | Planned start | Planned finish | Calendar | Resources | 825 Phase | 825 Location | 825 Sub-location |
| --- | --- | --- | --- | --- | --- | --- | --- | --- | --- | --- | --- | --- | --- | --- | --- |
|  | 4 | **SB STUB TUNNELS** |  |  | 2013-12-02 | 2014-08-27 |  |  |  |  |  |  |  |  |  |
| 8250CC10230 |  | SB Stub Tunnels - Mapping & Survey |  | 2d | 2013-12-02 A | 2013-12-06 A | 8250SB1540 | 100% | 2013-11-21 | 2013-11-22 |  |  |  |  |  |
| 8250CC10240 |  | SB Stub Tunnels - Shotcrete & Waterproofing |  | 7d | 2014-02-13 A | 2014-03-13 A | 8250CC10230, 8250DA4240 | 100% | 2013-11-23 | 2013-11-30 |  |  |  |  |  |
| 8250CC10250 |  | SB Stub Tunnels - Invert Slabs |  | 7d | 2014-04-01 A | 2014-04-12 A | 8250CC10240 | 100% | 2013-12-02 | 2013-12-09 |  |  |  |  |  |
| 8250CC10260 |  | SB Stub Tunnels - Tunnel Lining |  | 30d | 2014-04-30 A | 2014-07-30 A | 8250CC10250 | 100% | 2013-12-10 | 2014-01-16 |  |  |  |  |  |
| 8250CC10270 |  | SB Stub Tunnels - Walkways |  | 14d | 2014-08-16 A | 2014-08-27 A | 8250CC10260 | 100% | 2014-09-01 | 2014-09-17 |  |  |  |  |  |
|  | 4 | **BORED TUNNEL NORTH BOUND** |  |  | 2013-04-09 | 2016-09-23 |  |  |  |  |  |  |  |  |  |
|  | 1 | **TBM** |  |  | 2013-04-09 | 2015-08-28 |  |  |  |  |  |  |  |  |  |
| 8250CC9950 |  | Entrance Concrete and Packing |  | 8d | 2013-04-09 A | 2013-04-15 A | 8250ELS530 | 100% | 2013-10-02 | 2013-10-10 |  | General tunnel worker (Shift 1 - crew of 10) [1000 h]; General tunnel worker (Shift 2 - crew of 10) [1000 h]; Skilled Scaffolder (crew of 6) [600 h]; General Labor (Crew of 4) [400 h] | CONS | 2565 | TBM |
| 8250CC9960 |  | TBM Cradle |  | 8d | 2013-04-09 A | 2013-05-15 A | 8250CC9950 SS | 100% | 2013-10-02 | 2013-10-10 |  | TBM General Support crew (Shift 1 - crew of 10) [1000 h]; TBM specialists crew (Shift 1 - crew of 5) [500 h]; Crawler Crane [80 h]; 500T Lifting Crane [80 h] | CONS | 2565 | TBM |
| 8250CC9970 |  | New TBM for NB Delivery to Site | milestone | 0d | 2013-04-15 A | 2013-04-15 A | 8250CC9950 | 100% | 2013-09-30 | 2013-09-30 | 825_7-day w/o holidays |  | CONS | 2565 | TBM |
| 8250NB1000 |  | TBM Assembly on Ground Level |  | 40d | 2013-04-16 A | 2013-05-20 A | 8250CC9970, 8250CC9960 | 100% | 2013-10-02 | 2013-11-18 |  | Skilled Scaffolder (crew of 6) [2400 h]; Crawler Crane [400 h]; 500T Lifting Crane [400 h]; TBM specialists crew (Shift 1 - crew of 5) [2000 h]; TBM specialists crew (Shift 2 - crew of 5) [2000 h]; TBM General Support crew (Shift 2 - crew of 10) [4000 h]; TBM General Support crew (Shift 1 - crew of 10) [4000 h] | CONS | 2565 | TBM |
| 8250NB1020 |  | TBM Assembly Down the Shaft |  | 40d | 2013-05-16 A | 2013-06-30 A | 8250CC9970, 8250SB1140 | 100% | 2013-10-02 | 2013-11-18 |  | TBM General Support crew (Shift 1 - crew of 10) [4000 h]; TBM General Support crew (Shift 2 - crew of 10) [4000 h]; TBM specialists crew (Shift 1 - crew of 5) [2000 h]; TBM specialists crew (Shift 2 - crew of 5) [2000 h]; Crawler Crane [400 h]; 500T Lifting Crane [400 h] | CONS | 2565 | TBM |
| 8250NB1040 |  | TBM Final Assembly and Test for Launching |  | 21d | 2013-06-20 A | 2013-07-08 A | 8250NB1020, 8250NB1000 | 100% | 2013-10-02 | 2013-10-26 |  | TBM specialists crew (Shift 1 - crew of 5) [1050 h]; TBM General Support crew (Shift 2 - crew of 10) [2100 h]; TBM General Support crew (Shift 1 - crew of 10) [2100 h]; Crawler Crane [210 h]; 500T Lifting Crane [210 h]; TBM specialists crew (Shift 2 - crew of 5) [1050 h] | CONS | 2565 | TBM |
| 8250NB1060 |  | Thrust Block and Temp Segments |  | 21d | 2013-07-05 A | 2013-07-15 A | 8250NB1040 | 100% | 2013-10-02 | 2013-10-26 |  | TBM General Support crew (Shift 1 - crew of 10) [2100 h]; TBM General Support crew (Shift 2 - crew of 10) [2100 h]; TBM specialists crew (Shift 1 - crew of 5) [1050 h]; TBM specialists crew (Shift 2 - crew of 5) [1050 h]; Crawler Crane [210 h]; 500T Lifting Crane [210 h] | CONS | 2565 | TBM |
| 8250NB1100 |  | Temp Staging, Back-up Cars, Conveyor Belt & Segment Hoist Installation |  | 22d | 2013-07-18 A | 2013-08-23 A | 8250SWMP0230, 8250NB1080, 8250ID03 | 100% | 2014-03-18 | 2014-04-12 |  | General tunnel worker (Shift 1 - crew of 10) [2200 h]; General tunnel worker (Shift 2 - crew of 10) [2200 h]; TBM General Support crew (Shift 1 - crew of 10) [2200 h]; TBM specialists crew (Shift 1 - crew of 5) [1100 h]; Crawler Crane [220 h]; 500T Lifting Crane [220 h] | CONS | 2565 | TBM |
|  | 1 | **NB TBM REMOVAL & DISMANTLING** |  |  | 2014-11-05 | 2015-03-31 |  |  |  |  |  |  |  |  |  |
|  | 1 | **PRE-TBM DISMANTLING** |  |  | 2014-11-05 | 2015-01-31 |  |  |  |  |  |  |  |  |  |
| 8250NBDIS0015 |  | C1 Conveyor Belt Frame/ Roller Dismantling Inside Tunnel |  | 9d | 2014-11-05 A | 2014-11-17 A | 8250NBDIS0005 | 100% | 2014-12-31 | 2015-01-09 | 825_24 Hours w/o holidays |  |  |  |  |
| 8250NBDIS0005 |  | C1 Conveyor Belt Wind Up |  | 4d | 2014-11-07 A | 2014-11-08 A | 8250CC10080 FS+5d | 100% | 2014-12-31 | 2015-01-04 | 825_24 Hours w/o holidays |  |  |  |  |
| 8250NBDIS0010 |  | C1 Belt Strage Cassette Dismantling inside CC Tunnel |  | 9d | 2014-11-13 A | 2014-11-20 A | 8250NBDIS0005 | 100% | 2015-01-04 | 2015-01-13 | 825_24 Hours w/o holidays |  |  |  |  |
| 8250NBDIS0025 |  | Move Track in the CC Tunnel to Center Position |  | 8d | 2014-11-17 A | 2014-11-26 A | 8250NBDIS0010, 8250NBDIS0015 | 100% | 2015-01-09 | 2015-01-17 | 825_24 Hours w/o holidays |  |  |  |  |
| 8250NBDIS0030 |  | Working Platform at Shaft Bottom Modification |  | 8d | 2014-11-17 A | 2014-11-26 A | 8250NBDIS0015, 8250NBDIS0010 | 100% | 2015-01-09 | 2015-01-17 | 825_24 Hours w/o holidays |  |  |  |  |
| 8250NBDIS0020 |  | C2/C1 Conveyor & Support Frame Dismantling at Shaft Bottom |  | 3d | 2014-11-21 A | 2014-11-25 A | 8250NBDIS0015 FS-2d, 8250NBDIS0010 FS-2d | 100% | 2015-01-11 | 2015-01-14 | 825_24 Hours w/o holidays |  |  |  |  |
| 8250NBDIS0035 |  | Track Maintenance, Shift Sleepers at Proper Position |  | 38d | 2014-12-01 A | 2015-01-31 A | 8250CC10080 FS+5d, 8250NBDIS0025, 8250NBDIS0030 | 100% | 2014-12-31 | 2015-02-07 | 825_24 Hours w/o holidays |  |  |  |  |

| ID | WBS | Activity | Duration | Start | Finish | Predecessors | Complete | Planned start | Planned finish | Calendar |
| --- | --- | --- | --- | --- | --- | --- | --- | --- | --- | --- |
|  | 2 | **BACK-UP GANTRY** |  | 2014-11-07 | 2015-01-31 |  |  |  |  |  |
| 8250NBDIS0040 |  | Invert Cleaning between Bridge & TBM | 2d | 2014-11-07 A | 2014-11-08 A | 8250CC10080 FS+5d | 100% | 2014-12-31 | 2015-01-02 | 825_24 Hours w/o holidays |
| 8250NBDIS0060 |  | Disconnect Hoses/Pipes Between Gantry | 18d | 2014-11-09 A | 2014-12-10 A | 8250NBDIS0040 SS | 100% | 2014-12-31 | 2015-01-18 | 825_24 Hours w/o holidays |
| 8250NBDIS0055 |  | Segment Feeder Dismantling | 4d | 2014-11-14 A | 2014-11-18 A | 8250NBDIS0045 | 100% | 2015-01-04 | 2015-01-08 | 825_24 Hours w/o holidays |
| 8250NBDIS0050 |  | Cleaning & Unnecessary Materials Removal on Gantries/ TBM | 17d | 2014-11-16 A | 2014-12-06 A | 8250CC10080 FS+5d | 100% | 2014-12-31 | 2015-01-17 | 825_24 Hours w/o holidays |
| 8250NBDIS0065 |  | Belt Conveyor on the Gantries Dismantling | 9d | 2014-11-19 A | 2014-12-02 A | 8250NBDIS0020 SS | 100% | 2015-01-11 | 2015-01-20 | 825_24 Hours w/o holidays |
| 8250NBDIS0045 |  | Installation of Short Sleepers Underneath of Bridge (12 Nos.) | 3d | 2014-11-20 A | 2014-11-24 A | 8250NBDIS0040 FS-1d | 100% | 2015-01-01 | 2015-01-04 | 825_24 Hours w/o holidays |
| 8250NBDIS0070 |  | Dismantling of Side Walkway on Each Gantry | 9d | 2014-11-27 A | 2014-12-10 A | 8250NBDIS0065 SS | 100% | 2015-01-11 | 2015-01-20 | 825_24 Hours w/o holidays |
| 8250NBDIS0095 |  | Electrical Cable Disconnect & Buy Back Components Removal | 20d | 2014-12-01 A | 2014-12-20 A | 8250NBDIS0055 | 100% | 2014-12-31 | 2015-01-20 | 825_24 Hours w/o holidays |
| 8250NBDIS0075 |  | Dismantling of California Switch Behind of No. 06 Gantry | 3d | 2014-12-08 A | 2014-12-10 A | 8250NBDIS0070 FF, 8250NBDIS0070 SS | 100% | 2014-12-31 | 2015-01-03 | 825_24 Hours w/o holidays |
| 8250NBDIS0085 |  | 2nd Ventillation Duct Dismantling | 9d | 2014-12-08 A | 2014-12-10 A | 8250NBDIS0080 SS | 100% | 2014-12-31 | 2015-01-09 | 825_24 Hours w/o holidays |
| 8250NBDIS0090 |  | Cut-Off Power Supply to TBM/ Disconnect HV Cable from TBM | 3d | 2014-12-08 A | 2014-12-10 A | 8250NBDIS0085 FF, 8250NBDIS0085 SS | 100% | 2015-01-06 | 2015-01-09 | 825_24 Hours w/o holidays |
| 8250NBDIS0080 |  | Extraction of Remaining Duct from Duct Cassette | 9d | 2014-12-11 A | 2014-12-20 A | 8250NBDIS0070 SS | 100% | 2014-12-31 | 2015-01-09 | 825_24 Hours w/o holidays |
| 8250NBDIS0115 |  | No. 06 & 05 Gantry Move to Launching Shaft with C1 Chain, Bracket Removal | 3d | 2014-12-11 A | 2014-12-13 A | 8250NBDIS0090, 8250NBDIS0050, 8250NBDIS0060, 8250NBDIS0075, 8250NBDIS0110 | 100% | 2015-01-13 | 2015-01-16 | 825_24 Hours w/o holidays |
| 8250NBDIS0125 |  | Gantry Steel Structure & Mounted Components Dismantling on the Ground | 50d | 2014-12-11 A | 2015-01-31 A | 8250NBDIS0115 FS-1d | 100% | 2015-01-15 | 2015-03-06 | 825_24 Hours w/o holidays |
| 8250NBDIS0120 |  | No. 05 Gantry Dismantling at Shaft Bottom & Lift Up to Ground | 3d | 2014-12-15 A | 2014-12-23 A | 8250NBDIS0145 | 100% | 2015-01-25 | 2015-01-28 | 825_24 Hours w/o holidays |
| 8250NBDIS0130 |  | No. 06 Gantry Dismantling at Shaft Bottom & Lift Up to Ground | 4d | 2014-12-15 A | 2014-12-23 A | 8250NBDIS0120 | 100% | 2015-01-28 | 2015-02-01 | 825_24 Hours w/o holidays |
| 8250NBDIS0135 |  | No. 04 & 03 Gantry Move to Launching Shaft | 2d | 2014-12-15 A | 2014-12-23 A | 8250NBDIS0115 | 100% | 2015-01-16 | 2015-01-18 | 825_24 Hours w/o holidays |
| 8250NBDIS0140 |  | No. 03 Gantry Dismantling at Shaft Bottom & Lift Up to Ground | 3d | 2014-12-15 A | 2014-12-23 A | 8250NBDIS0135 | 100% | 2015-01-18 | 2015-01-21 | 825_24 Hours w/o holidays |
| 8250NBDIS0145 |  | No. 04 Gantry Dismantling at Shaft Bottom & Lift Up to Ground | 4d | 2014-12-15 A | 2014-12-23 A | 8250NBDIS0140 | 100% | 2015-01-21 | 2015-01-25 | 825_24 Hours w/o holidays |
| 8250NBDIS0180 |  | TBM Dismantling Area Preparation(Working Platform, Tools, etc. Arrange) | 4d | 2014-12-15 A | 2014-12-24 A | 8250NBDIS0175 SS, 8250NBDIS0130 | 100% | 2015-02-02 | 2015-02-06 | 825_24 Hours w/o holidays |
| 8250NBDIS0100 |  | Hose Real Dismantling at No. 06 Gantry | 3d | 2014-12-22 A | 2014-12-27 A | 8250NBDIS0095 SS+7d | 100% | 2015-01-07 | 2015-01-10 | 825_24 Hours w/o holidays |
| 8250NBDIS0105 |  | Winch Installation Inside CC Tunnel | 3d | 2014-12-29 A | 2015-01-02 A | 8250NBDIS0100 | 100% | 2015-01-10 | 2015-01-13 | 825_24 Hours w/o holidays |
| 8250NBDIS0110 |  | Disconnect V Duct at Shaft Bottom & Removal of Handrail along Tunnel Walkway | 3d | 2014-12-29 A | 2015-01-02 A | 8250NBDIS0105 FF, 8250NBDIS0105 SS | 100% | 2015-01-10 | 2015-01-13 | 825_24 Hours w/o holidays |
| 8250NBDIS0150 |  | No. 01 Gantry Boogie Dismantling & Temporary Wheel Installation | 14d | 2014-12-29 A | 2015-01-17 A | 8250NBDIS0135 | 100% | 2015-01-18 | 2015-02-01 | 825_24 Hours w/o holidays |
| 8250NBDIS0165 |  | No. 01 Gantry Dismantling at Shaft Bottom & Lift Up to Ground | 5d | 2014-12-29 A | 2015-01-09 A | 8250NBDIS0170 | 100% | 2015-02-11 | 2015-02-16 | 825_24 Hours w/o holidays |
| 8250NBDIS0170 |  | No. 02 Gantry Dismantling at Shaft Bottom & Lift Up to Ground | 4d | 2014-12-29 A | 2015-01-09 A | 8250NBDIS0160, 8250NBDIS0180 | 100% | 2015-02-07 | 2015-02-11 | 825_24 Hours w/o holidays |
| 8250NBDIS0155 |  | No. 02 Bridge & No. 01 Gantry Move to Launching Shaft | 2d | 2015-01-19 A | 2015-01-20 A | 8250NBDIS0150 FS-1d | 100% | 2015-01-31 | 2015-02-02 | 825_24 Hours w/o holidays |
| 8250NBDIS0160 |  | Bridge Dismantling at Shaft Bottom & Lift Up to Ground | 5d | 2015-01-21 A | 2015-01-24 A | 8250NBDIS0155 | 100% | 2015-02-02 | 2015-02-07 | 825_24 Hours w/o holidays |
| 8250NBDIS0175 |  | Sleepers & Rails Around No. 01 Gantry Area | 4d | 2015-01-26 A | 2015-01-31 A | 8250NBDIS0160 SS | 100% | 2015-02-02 | 2015-02-06 | 825_24 Hours w/o holidays |

| ID | WBS | Activity | Duration | Start | Finish | Predecessors | Complete | Planned start | Planned finish | Calendar |
| --- | --- | --- | --- | --- | --- | --- | --- | --- | --- | --- |
|  | 3 | **TBM MAIN BODY** |  | 2014-11-07 | 2015-03-31 |  |  |  |  |  |
| 8250NBDIS0210 |  | Muck Removal in Front of Cutter | 10d | 2014-11-07 A | 2014-11-16 A | 8250CC10080 FS+5d | 100% | 2014-12-31 | 2015-01-10 | 825_24 Hours w/o holidays |
| 8250NBDIS0250 |  | TBM Bottom Cleaning(Rear Side) | 7d | 2014-11-07 A | 2014-11-14 A | 8250NBDIS0230 SS | 100% | 2014-12-31 | 2015-01-07 | 825_24 Hours w/o holidays |
| 8250NBDIS0220 |  | Stopper Between TBM & Last Rung Welding | 10d | 2014-11-09 A | 2014-11-22 A | 8250NBDIS0210 SS | 100% | 2014-12-31 | 2015-01-10 | 825_24 Hours w/o holidays |
| 8250NBDIS0230 |  | Sealing Grouting(TBM Inside)/Grouting from 824 Stab Tunnel | 12d | 2014-11-17 A | 2014-11-29 A | 8250NBDIS0210 SS | 100% | 2014-12-31 | 2015-01-12 | 825_24 Hours w/o holidays |
| 8250NBDIS0260 |  | Hydraulic Hose Disconnect & Plug/ Electrical Cable Disconnect | 7d | 2014-11-24 A | 2014-12-20 A | 8250NBDIS0250 | 100% | 2015-01-07 | 2015-01-14 | 825_24 Hours w/o holidays |
| 8250NBDIS0240 |  | All Hydraulic Cylinders Retraction/Erector & Cutting Wheel Positioning | 1d | 2014-12-05 A | 2014-12-06 A | 8250NBDIS0230 FF, 8250NBDIS0270, 8250NBDIS0220 | 100% | 2015-01-11 | 2015-01-12 | 825_24 Hours w/o holidays |
| 8250NBDIS0280 |  | Cutting Wheel & Rotary CouplingDismantling | 55d | 2014-12-08 A | 2015-02-28 A | 8250NBDIS0230 SS | 100% | 2014-12-31 | 2015-02-24 | 825_24 Hours w/o holidays |
| 8250NBDIS0270 |  | Return Components Removal/ Removal Works Preparation | 7d | 2014-12-22 A | 2014-12-31 A | 8250NBDIS0260 SS | 100% | 2014-12-31 | 2015-01-07 | 825_24 Hours w/o holidays |
| 8250NBDIS0290 |  | Ring Adjuster Dismantling | 5d | 2015-01-02 A | 2015-01-12 A | 8250NBDIS0240, 8250NBDIS0230 | 100% | 2015-01-12 | 2015-01-17 | 825_24 Hours w/o holidays |
| 8250NBDIS0340 |  | Pre-Assembly of Screw Conveyor Cradle on the Ground | 7d | 2015-01-12 A | 2015-01-22 A | 8250NBDIS0330 FF, 8250NBDIS0330 SS | 100% | 2015-01-14 | 2015-01-21 | 825_24 Hours w/o holidays |
| 8250NBDIS0300 |  | Erector Head Dismantling | 3d | 2015-01-13 A | 2015-01-17 A | 8250NBDIS0290 FS-2d | 100% | 2015-01-15 | 2015-01-18 | 825_24 Hours w/o holidays |
| 8250NBDIS0350 |  | Screw Conveyor & Erector Carrier Frame Dismantling | 5d | 2015-01-14 A | 2015-01-22 A | 8250NBDIS0340 FS-1d | 100% | 2015-01-20 | 2015-01-25 | 825_24 Hours w/o holidays |
| 8250NBDIS0310 |  | Ring Building Platform Dismantling | 3d | 2015-01-19 A | 2015-01-24 A | 8250NBDIS0300 SS | 100% | 2015-01-15 | 2015-01-18 | 825_24 Hours w/o holidays |
| 8250NBDIS0330 |  | Open Screw Conveyor Inspection Hole & Stopper Installation | 3d | 2015-01-23 A | 2015-01-28 A | 8250NBDIS0320 SS | 100% | 2015-01-18 | 2015-01-21 | 825_24 Hours w/o holidays |
| 8250NBDIS0380 |  | Front Part of Screw Conveyor Dismantling | 4d | 2015-01-23 A | 2015-02-07 A | 8250NBDIS0360 | 100% | 2015-01-27 | 2015-01-31 | 825_24 Hours w/o holidays |
| 8250NBDIS0390 |  | Man-Lock & Material-Lock Dismantling | 5d | 2015-01-23 A | 2015-02-07 A | 8250NBDIS0380 SS | 100% | 2015-01-27 | 2015-02-01 | 825_24 Hours w/o holidays |
| 8250NBDIS0410 |  | Erector Cross Frame & Displacement Cylinder Dismantling | 7d | 2015-01-23 A | 2015-02-07 A | 8250NBDIS0390 FS-1d | 100% | 2015-01-31 | 2015-02-07 | 825_24 Hours w/o holidays |
| 8250NBDIS0320 |  | Sleeper & Rail Extension until TBM | 3d | 2015-01-26 A | 2015-01-31 A | 8250NBDIS0310 | 100% | 2015-01-18 | 2015-01-21 | 825_24 Hours w/o holidays |
| 8250NBDIS0400 |  | Thrust Cylinder Dismantling & Cylinder Housing Cut | 30d | 2015-02-02 A | 2015-02-07 A | 8250NBDIS0360 | 100% | 2015-01-02 | 2015-02-01 | 825_24 Hours w/o holidays |
| 8250NBDIS0420 |  | Erector Cross Frame(30Ton) Move to Shaft & Lift Up | 2d | 2015-02-09 A | 2015-02-10 A | 8250NBDIS0410 SS | 100% | 2015-02-28 | 2015-03-02 | 825_24 Hours w/o holidays |
| 8250NBDIS0370 |  | Screw Conveyor & Erector 2ndly Dismantling on the Ground | 4d | 2015-02-23 A | 2015-02-28 A | 8250NBDIS0280 FS+2d | 100% | 2015-03-02 | 2015-03-06 | 825_24 Hours w/o holidays |
| 8250NBDIS0430 |  | Cutter Motor & Gear Box Dismantling | 9d | 2015-02-23 A | 2015-03-04 A | 8250NBDIS0420 | 100% | 2015-03-02 | 2015-03-11 | 825_24 Hours w/o holidays |
| 8250NBDIS0440 |  | TBM Bottom Cleaning(Front Side) & Oil Removal from Main Drive | 9d | 2015-02-23 A | 2015-03-04 A | 8250NBDIS0430 SS | 100% | 2015-03-02 | 2015-03-11 | 825_24 Hours w/o holidays |
| 8250NBDIS0450 |  | Installation of Main Drive Slide Frame & Main Drive Dismantling | 9d | 2015-02-23 A | 2015-03-04 A | 8250NBDIS0440 | 100% | 2015-03-11 | 2015-03-20 | 825_24 Hours w/o holidays |
| 8250NBDIS0360 |  | Screw Conveyor & Erector Move to Launching Shaft & Lift Up | 2d | 2015-02-27 A | 2015-02-27 A | 8250NBDIS0350 | 100% | 2015-02-28 | 2015-03-02 | 825_24 Hours w/o holidays |
| 8250NBDIS0460 |  | Main Drive(120Ton) Move to Shaft & Lift Up | 2d | 2015-03-05 A | 2015-03-07 A | 8250NBDIS0165, 8250NBDIS0450 | 100% | 2015-02-28 | 2015-03-02 | 825_24 Hours w/o holidays |
| 8250NBDIS0470 |  | Main Drive 2nd Dismantling on the Ground | 6d | 2015-03-09 A | 2015-03-14 A | 8250NBDIS0460 | 100% | 2015-02-28 | 2015-03-06 | 825_24 Hours w/o holidays |
| 8250NBDIS0480 |  | Spherical Bearing Dismantling | 5d | 2015-03-16 A | 2015-03-21 A | 8250NBDIS0470 SS | 100% | 2015-02-28 | 2015-03-05 | 825_24 Hours w/o holidays |
| 8250NBDIS0500 |  | Big Size Cargo Clearing/Greasing/Packing/Internal Transportation | 11d | 2015-03-16 A | 2015-03-31 A | 8250NBDIS0450 FS-1d | 100% | 2015-02-28 | 2015-03-11 | 825_24 Hours w/o holidays |
| 8250NBDIS0510 |  | Shield Steel Frame, Bulhead, Conical Plate, Stabilizer, Pipe Removal | 12d | 2015-03-16 A | 2015-03-28 A | 8250NBDIS0500 SS | 100% | 2015-02-28 | 2015-03-12 | 825_24 Hours w/o holidays |
| 8250NBDIS0540 |  | Dismantled Components Packing & Discharge | 25d | 2015-03-16 A | 2015-03-31 A | 8250NBDIS0125 FS-1d, 8250NBDIS0510 | 100% | 2015-03-12 | 2015-04-06 | 825_24 Hours w/o holidays |
| 8250NBDIS0490 |  | Spherical Bearing Move & Lift Up | 2d | 2015-03-23 A | 2015-03-23 A | 8250NBDIS0480 FS-2d | 100% | 2015-03-03 | 2015-03-05 | 825_24 Hours w/o holidays |
| 8250NBDIS0520 |  | Seal Welding for Shield Flange Connection & Grout Pipe Plunge Welding | 5d | 2015-03-23 A | 2015-03-27 A | 8250NBDIS0490 SS | 100% | 2015-02-28 | 2015-03-05 | 825_24 Hours w/o holidays |
| 8250NBDIS0530 |  | Cleaning & Tools, Unnecessary Sleeper Working Platform Dismantling | 6d | 2015-03-23 A | 2015-03-27 A | 8250NBDIS0520 FF, 8250NBDIS0400 | 100% | 2015-02-28 | 2015-03-06 | 825_24 Hours w/o holidays |

| ID | WBS | Activity | Type | Duration | Start | Finish | Predecessors | Complete | Planned start | Planned finish | Calendar | Resources | 825 Phase | 825 Location | 825 Sub-location |
| --- | --- | --- | --- | --- | --- | --- | --- | --- | --- | --- | --- | --- | --- | --- | --- |
|  | 2 | **REMOVAL OF SLEEPERS, TEMPORARY RAILS & TRAIN PLATFORM** |  |  | 2015-01-26 | 2015-08-28 |  |  |  |  |  |  |  |  |  |
| 8250CC11565 |  | NB - Cutting of Sleepers (160 Nos.) - End ~CP12 |  | 44d | 2015-01-26 A | 2015-06-30 A | 8250NB1182 SS, 8250NB1182 FF | 100% | 2015-02-28 | 2015-04-24 |  |  |  |  |  |
| 8250CC11570 |  | NB - CP13 ~ CP12 (Removal of Temporarry Tracks, Sleepers & Platform) |  | 6d | 2015-02-07 A | 2015-03-28 A | 8250CC11560 | 100% | 2015-06-26 | 2015-07-03 |  |  |  |  |  |
| 8250CC11575 |  | NB - Cutting of Sleepers (160 Nos.) - CP12 ~ Entrance |  | 44d | 2015-02-07 A | 2015-06-30 A | 8250CC11565 SS, 8250CC11565 FF | 100% | 2015-02-28 | 2015-04-24 |  |  |  |  |  |
| 8250CC11600 |  | NB - CP10 ~ CP09 (Removal of Temporarry Tracks, Sleepers & Platform) |  | 6d | 2015-04-15 A | 2015-05-02 A | 8250NBDIS0510 | 100% | 2015-05-15 | 2015-05-21 |  |  |  |  |  |
| 8250CC11545 |  | NB - CP15 ~ End (Removal of C/H Scrap, Cleaning Invert, Removal of Track) |  | 6d | 2015-04-16 A | 2015-05-02 A | 8250NBDIS0540 | 100% | 2015-04-30 | 2015-05-07 |  |  |  |  |  |
| 8250CC11550 |  | NB - CP15 ~ CP14 (Removal of Temporarry Tracks, Sleepers & Platform) |  | 6d | 2015-05-04 A | 2015-05-11 A | 8250CC11900 | 100% | 2015-06-17 | 2015-06-24 |  |  |  |  |  |
| 8250CC11560 |  | NB - CP14 ~ CP13 (Removal of Temporarry Tracks, Sleepers & Platform) |  | 6d | 2015-05-11 A | 2015-05-23 A | 8250CC11550 | 100% | 2015-06-18 | 2015-06-25 |  |  |  |  |  |
| 8250CC11580 |  | NB - CP12 ~ CP11 (Removal of Temporarry Tracks, Sleepers & Platform) |  | 6d | 2015-06-29 A | 2015-07-04 A | 8250CC11570 | 100% | 2015-07-31 | 2015-08-06 |  |  |  |  |  |
| 8250CC11590 |  | NB - CP11 ~ CP10 (Removal of Temporarry Tracks, Sleepers & Platform) |  | 6d | 2015-07-06 A | 2015-07-16 A | 8250CC11580 | 100% | 2015-08-31 | 2015-09-05 |  |  |  |  |  |
| 8250CC11610 |  | NB - CP09 ~ CP08 (Removal of Temporarry Tracks, Sleepers & Platform) |  | 6d | 2015-07-30 A | 2015-08-07 A | 8250CC11600 | 100% | 2015-08-31 | 2015-09-05 |  |  |  |  |  |
| 8250CC11890 |  | NB - CP08 ~ CP07 (Removal of Temporarry Tracks, Sleepers & Platform) |  | 6d | 2015-08-11 A | 2015-08-18 A | 8250CC11610 FS-1d | 100% | 2015-08-31 | 2015-09-05 |  |  |  |  |  |
| 8250CC11900 |  | NB - CP07 ~ Entrance (Removal of Temporarry Tracks, Sleepers & Platform) |  | 6d | 2015-08-22 A | 2015-08-28 A | 8250CC11890 FS-3d | 100% | 2015-08-31 | 2015-09-05 |  |  |  |  |  |
|  | 2 | **TUNNEL** |  |  | 2013-07-16 | 2016-09-23 |  |  |  |  |  |  |  |  |  |
| 8250NB1080 |  | TBM Initial Drive on NB Tunnel |  | 12.5d | 2013-07-16 A | 2013-09-09 A | 8250NB1040 FS+5d | 100% | 2013-06-14 | 2013-06-26 | 825_24 Hours w/o holidays | General tunnel worker (Shift 1 - crew of 10) [3000 h]; General tunnel worker (Shift 2 - crew of 10) [3000 h]; TBM General Support crew (Shift 1 - crew of 10) [3000 h]; Lining Segment installation crew (Shift 1 - crew of 4) [1200 h]; Lining Segment installation crew (Shift 2 - crew of 4) [1200 h]; TBM specialists crew (Shift 2 - crew of 5) [1500 h]; TBM specialists crew (Shift 1 - crew of 5) [1500 h]; TBM General Support crew (Shift 2 - crew of 10) [3000 h] | CONS | 2565 | TNN |
| 8250CC09980 |  | TBM Main Drive on NB Tunnel up to CH 117+958 |  | 13d | 2013-10-10 A | 2013-11-09 A | 8250SM2602 SS, 8250NB1080, 8250NB1100 | 100% | 2013-10-02 | 2013-10-15 | 825_24 Hours w/o holidays | General tunnel worker (Shift 1 - crew of 10) [3900 h]; General tunnel worker (Shift 2 - crew of 10) [3900 h]; Lining Segment installation crew (Shift 1 - crew of 4) [1560 h]; Lining Segment installation crew (Shift 2 - crew of 4) [1560 h]; Scaffolders in Tunnel (crew of 6) [2340 h]; TBM General Support crew (Shift 1 - crew of 10) [3900 h]; TBM General Support crew (Shift 2 - crew of 10) [3900 h]; TBM specialists crew (Shift 1 - crew of 5) [1950 h]; TBM specialists crew (Shift 2 - crew of 5) [1950 h]; Tunnel Carpenter (crew of 4) [1560 h]; Tunnel Concrete Workers (Crew of 4) [1560 h]; Locomotive [312 h]; Muck Car [312 h]; Gantry Crane [312 h]; 500T Lifting Crane [312 h]; Drilling Rig [312 h]; Dump Truck [312 h] | CONS | 2565 | TNN |
| 8250NB1220 |  | Pass NB CP7 +300m | milestone | 0d | 2013-10-28 A | 2013-10-28 A | 8250CC09980 | 100% | 2013-10-15 | 2013-10-15 | 825_7-day w/o holidays |  | CONS | 2565 | TNN |
| 8250CC09990 |  | TBM Main Drive on NB Tunnel up to CH 117+985 |  | 6d | 2013-11-09 A | 2013-11-15 A | 8250CC09980 | 100% | 2013-10-15 | 2013-10-21 | 825_24 Hours w/o holidays | General tunnel worker (Shift 1 - crew of 10) [1800 h]; General tunnel worker (Shift 2 - crew of 10) [1800 h]; Lining Segment installation crew (Shift 1 - crew of 4) [720 h]; Lining Segment installation crew (Shift 2 - crew of 4) [720 h]; Scaffolders in Tunnel (crew of 6) [1080 h]; TBM General Support crew (Shift 1 - crew of 10) [1800 h]; TBM General Support crew (Shift 2 - crew of 10) [1800 h]; TBM specialists crew (Shift 1 - crew of 5) [900 h]; TBM specialists crew (Shift 2 - crew of 5) [900 h]; Tunnel Carpenter (crew of 4) [720 h]; Tunnel Concrete Workers (Crew of 4) [720 h]; Locomotive [144 h]; Muck Car [144 h]; Gantry Crane [144 h]; 500T Lifting Crane [144 h]; Drilling Rig [144 h]; Dump Truck [144 h] | CONS | 2565 | TNN |
| 8250CC10000 |  | TBM Main Drive on NB Tunnel up to CH 118+177 |  | 35d | 2013-11-15 A | 2014-01-06 A | 8250CC09990 | 100% | 2013-10-21 | 2013-11-25 | 825_24 Hours w/o holidays | General tunnel worker (Shift 1 - crew of 10) [10500 h]; General tunnel worker (Shift 2 - crew of 10) [10500 h]; Lining Segment installation crew (Shift 1 - crew of 4) [4200 h]; Lining Segment installation crew (Shift 2 - crew of 4) [4200 h]; Scaffolders in Tunnel (crew of 6) [6300 h]; TBM General Support crew (Shift 1 - crew of 10) [10500 h]; TBM General Support crew (Shift 2 - crew of 10) [10500 h]; TBM specialists crew (Shift 1 - crew of 5) [5250 h]; TBM specialists crew (Shift 2 - crew of 5) [5250 h]; Tunnel Carpenter (crew of 4) [4200 h]; Tunnel Concrete Workers (Crew of 4) [4200 h]; Locomotive [840 h]; Muck Car [840 h]; Gantry Crane [840 h]; 500T Lifting Crane [840 h]; Drilling Rig [840 h]; Dump Truck [840 h] | CONS | 2565 | TNN |
| 8250CC10010 |  | TBM Main Drive on NB Tunnel up to CH 118+210 |  | 3d | 2014-01-06 A | 2014-01-11 A | 8250CC10000 | 100% | 2013-11-25 | 2013-11-28 | 825_24 Hours w/o holidays | General tunnel worker (Shift 1 - crew of 10) [900 h]; General tunnel worker (Shift 2 - crew of 10) [900 h]; Lining Segment installation crew (Shift 1 - crew of 4) [360 h]; Lining Segment installation crew (Shift 2 - crew of 4) [360 h]; Scaffolders in Tunnel (crew of 6) [540 h]; TBM General Support crew (Shift 1 - crew of 10) [900 h]; TBM General Support crew (Shift 2 - crew of 10) [900 h]; TBM specialists crew (Shift 1 - crew of 5) [450 h]; TBM specialists crew (Shift 2 - crew of 5) [450 h]; Tunnel Carpenter (crew of 4) [360 h]; Tunnel Concrete Workers (Crew of 4) [360 h]; Locomotive [72 h]; Muck Car [72 h]; Gantry Crane [72 h]; 500T Lifting Crane [72 h]; Drilling Rig [72 h]; Dump Truck [72 h] | CONS | 2565 | TNN |
| 8250NB1240 |  | Pass NB CP8 +300m | milestone | 0d | 2014-01-06 A | 2014-01-06 A | 8250CC10000 | 100% | 2013-11-25 | 2013-11-25 | 825_7-day w/o holidays |  | CONS | 2565 | TNN |
| 8250CC10020 |  | TBM Main Drive on NB Tunnel up to CH 118+436 |  | 44d | 2014-01-11 A | 2014-02-22 A | 8250CC10010 | 100% | 2013-11-28 | 2014-01-11 | 825_24 Hours w/o holidays | Scaffolders in Tunnel (crew of 6) [7920 h]; TBM General Support crew (Shift 1 - crew of 10) [13200 h]; TBM General Support crew (Shift 2 - crew of 10) [13200 h]; TBM specialists crew (Shift 1 - crew of 5) [6600 h]; TBM specialists crew (Shift 2 - crew of 5) [6600 h]; Tunnel Carpenter (crew of 4) [5280 h]; Tunnel Concrete Workers (Crew of 4) [5280 h]; Locomotive [1056 h]; Muck Car [1056 h]; Gantry Crane [1056 h]; 500T Lifting Crane [1056 h]; Drilling Rig [1056 h]; Dump Truck [1056 h]; General tunnel worker (Shift 1 - crew of 10) [13200 h]; General tunnel worker (Shift 2 - crew of 10) [13200 h]; Lining Segment installation crew (Shift 1 - crew of 4) [5280 h]; Lining Segment installation crew (Shift 2 - crew of 4) [5280 h] | CONS | 2565 | TNN |
| 8250CC10025 |  | Commencement of NB Belt Muck Out Conveyor System | milestone | 0d | 2014-01-18 A | 2014-01-18 A | 8250CC10010 | 100% | 2014-01-12 | 2014-01-12 | 825_7-day w/o holidays |  |  |  |  |
| 8250NB1260 |  | Pass NB CP9 +300m | milestone | 0d | 2014-02-14 A | 2014-02-14 A | 8250CC10020 | 100% | 2014-01-11 | 2014-01-11 | 825_7-day w/o holidays |  | CONS | 2565 | TNN |
| 8250CC10030 |  | TBM Main Drive on NB Tunnel up to CH 118+528 |  | 6d | 2014-02-22 A | 2014-03-18 A | 8250CC10025, 8250CC10020 | 100% | 2014-01-12 | 2014-01-18 | 825_24 Hours w/o holidays | General tunnel worker (Shift 1 - crew of 10) [1800 h]; General tunnel worker (Shift 2 - crew of 10) [1800 h]; Lining Segment installation crew (Shift 1 - crew of 4) [720 h]; Lining Segment installation crew (Shift 2 - crew of 4) [720 h]; Scaffolders in Tunnel (crew of 6) [1080 h]; TBM General Support crew (Shift 1 - crew of 10) [1800 h]; TBM General Support crew (Shift 2 - crew of 10) [1800 h]; TBM specialists crew (Shift 1 - crew of 5) [900 h]; TBM specialists crew (Shift 2 - crew of 5) [900 h]; Tunnel Carpenter (crew of 4) [720 h]; Tunnel Concrete Workers (Crew of 4) [720 h]; Locomotive [144 h]; Muck Car [144 h]; Gantry Crane [144 h]; 500T Lifting Crane [144 h]; Drilling Rig [144 h]; Dump Truck [144 h] | CONS | 2565 | TNN |
| 8250CC10035 |  | TBM Main Drive on NB Tunnel up to CH 118+901 |  | 31d | 2014-03-18 A | 2014-05-09 A | 8250CC10030 | 100% | 2014-01-18 | 2014-02-18 | 825_24 Hours w/o holidays | TBM General Support crew (Shift 1 - crew of 10) [9300 h]; TBM General Support crew (Shift 2 - crew of 10) [9300 h]; TBM specialists crew (Shift 1 - crew of 5) [4650 h]; TBM specialists crew (Shift 2 - crew of 5) [4650 h]; Tunnel Carpenter (crew of 4) [3720 h]; Tunnel Concrete Workers (Crew of 4) [3720 h]; General tunnel worker (Shift 1 - crew of 10) [9300 h]; General tunnel worker (Shift 2 - crew of 10) [9300 h]; Lining Segment installation crew (Shift 1 - crew of 4) [3720 h]; Lining Segment installation crew (Shift 2 - crew of 4) [3720 h]; Scaffolders in Tunnel (crew of 6) [5580 h]; Locomotive [744 h]; Muck Car [744 h]; Gantry Crane [744 h]; 500T Lifting Crane [744 h]; Drilling Rig [744 h]; Dump Truck [744 h] | CONS | 2565 | TNN |
| 8250NB1280 |  | Pass NB CP10 +300m | milestone | 0d | 2014-04-02 A | 2014-04-02 A | 8250CC10030 | 100% | 2014-01-18 | 2014-01-18 | 825_7-day w/o holidays |  | CONS | 2565 | TNN |
| 8250CC10040 |  | TBM Main Drive on NB Tunnel up to CH 119+252 |  | 24d | 2014-05-09 A | 2014-06-29 A | 8250CC10035 | 100% | 2014-02-18 | 2014-03-14 | 825_24 Hours w/o holidays | General tunnel worker (Shift 1 - crew of 10) [7200 h]; General tunnel worker (Shift 2 - crew of 10) [7200 h]; Lining Segment installation crew (Shift 2 - crew of 4) [2880 h]; Scaffolders in Tunnel (crew of 6) [4320 h]; TBM General Support crew (Shift 1 - crew of 10) [7200 h]; TBM General Support crew (Shift 2 - crew of 10) [7200 h]; TBM specialists crew (Shift 1 - crew of 5) [3600 h]; TBM specialists crew (Shift 2 - crew of 5) [3600 h]; Tunnel Carpenter (crew of 4) [2880 h]; Tunnel Concrete Workers (Crew of 4) [2880 h]; Lining Segment installation crew (Shift 1 - crew of 4) [2880 h]; Locomotive [576 h]; Muck Car [576 h]; Gantry Crane [576 h]; 500T Lifting Crane [576 h]; Drilling Rig [576 h]; Dump Truck [576 h] | CONS | 2565 | TNN |
| 8250NB1300 |  | Pass NB CP11 +300m | milestone | 0d | 2014-05-15 A | 2014-05-15 A | 8250CC10035 | 100% | 2014-02-18 | 2014-02-18 | 825_7-day w/o holidays |  | CONS | 2565 | TNN |
| 8250NB1320 |  | Pass NB CP12 +300m | milestone | 0d | 2014-06-15 A | 2014-06-15 A | 8250CC10040 | 100% | 2014-03-14 | 2014-03-14 | 825_7-day w/o holidays |  | CONS | 2565 | TNN |
| 8250CC10050 |  | TBM Main Drive on NB Tunnel up to CH 119+450 |  | 14d | 2014-06-29 A | 2014-07-30 A | 8250CC10040, 8250PS1170 | 100% | 2014-03-14 | 2014-03-28 | 825_24 Hours w/o holidays | General tunnel worker (Shift 1 - crew of 10) [4200 h]; General tunnel worker (Shift 2 - crew of 10) [4200 h]; Lining Segment installation crew (Shift 1 - crew of 4) [1680 h]; Lining Segment installation crew (Shift 2 - crew of 4) [1680 h]; Scaffolders in Tunnel (crew of 6) [2520 h]; TBM General Support crew (Shift 1 - crew of 10) [4200 h]; TBM General Support crew (Shift 2 - crew of 10) [4200 h]; TBM specialists crew (Shift 1 - crew of 5) [2100 h]; TBM specialists crew (Shift 2 - crew of 5) [2100 h]; Tunnel Carpenter (crew of 4) [1680 h]; Tunnel Concrete Workers (Crew of 4) [1680 h]; Locomotive [336 h]; Muck Car [336 h]; Gantry Crane [336 h]; 500T Lifting Crane [336 h]; Drilling Rig [336 h]; Dump Truck [336 h] | CONS | 2565 | TNN |
| 8250NB1340 |  | Pass NB CP13 +300m | milestone | 0d | 2014-07-27 A | 2014-07-27 A | 8250CC10050 | 100% | 2014-03-28 | 2014-03-28 | 825_7-day w/o holidays |  | CONS | 2565 | TNN |
| 8250CC10060 |  | TBM Main Drive on NB Tunnel up to CH 119+623 |  | 25d | 2014-07-30 A | 2014-08-28 A | 8250CC10050 | 100% | 2014-07-31 | 2014-08-25 | 825_24 Hours w/o holidays | General tunnel worker (Shift 2 - crew of 10) [7500 h]; Lining Segment installation crew (Shift 1 - crew of 4) [3000 h]; Lining Segment installation crew (Shift 2 - crew of 4) [3000 h]; Scaffolders in Tunnel (crew of 6) [4500 h]; TBM General Support crew (Shift 1 - crew of 10) [7500 h]; TBM General Support crew (Shift 2 - crew of 10) [7500 h]; TBM specialists crew (Shift 1 - crew of 5) [3750 h]; TBM specialists crew (Shift 2 - crew of 5) [3750 h]; Tunnel Carpenter (crew of 4) [3000 h]; Tunnel Concrete Workers (Crew of 4) [3000 h]; Locomotive [600 h]; Muck Car [600 h]; Gantry Crane [600 h]; 500T Lifting Crane [600 h]; Drilling Rig [600 h]; Dump Truck [600 h]; General tunnel worker (Shift 1 - crew of 10) [7500 h] | CONS | 2565 | TNN |
| 8250CC10070 |  | TBM Main Drive on NB Tunnel up to CH 119+666 |  | 30d | 2014-08-28 A | 2014-09-12 A | 8250CC10060 | 100% | 2014-08-31 | 2014-09-30 | 825_24 Hours w/o holidays | TBM General Support crew (Shift 2 - crew of 10) [9000 h]; TBM specialists crew (Shift 1 - crew of 5) [4500 h]; TBM specialists crew (Shift 2 - crew of 5) [4500 h]; Tunnel Carpenter (crew of 4) [3600 h]; Tunnel Concrete Workers (Crew of 4) [3600 h]; Muck Car [720 h]; Gantry Crane [720 h]; 500T Lifting Crane [720 h]; Drilling Rig [720 h]; Dump Truck [720 h]; Locomotive [720 h]; General tunnel worker (Shift 1 - crew of 10) [9000 h]; General tunnel worker (Shift 2 - crew of 10) [9000 h]; Lining Segment installation crew (Shift 1 - crew of 4) [3600 h]; Lining Segment installation crew (Shift 2 - crew of 4) [3600 h]; Scaffolders in Tunnel (crew of 6) [5400 h]; TBM General Support crew (Shift 1 - crew of 10) [9000 h] | CONS | 2565 | TNN |
| 8250CC10080 |  | TBM Main Drive on NB Tunnel up to CH 119+858 |  | 31d | 2014-09-12 A | 2014-11-06 A | 8250CC10070 | 100% | 2014-09-30 | 2014-10-31 | 825_24 Hours w/o holidays | Dump Truck [744 h]; General tunnel worker (Shift 1 - crew of 10) [9300 h]; General tunnel worker (Shift 2 - crew of 10) [9300 h]; Lining Segment installation crew (Shift 1 - crew of 4) [3720 h]; Lining Segment installation crew (Shift 2 - crew of 4) [3720 h]; Scaffolders in Tunnel (crew of 6) [5580 h]; TBM General Support crew (Shift 1 - crew of 10) [9300 h]; TBM General Support crew (Shift 2 - crew of 10) [9300 h]; TBM specialists crew (Shift 1 - crew of 5) [4650 h]; TBM specialists crew (Shift 2 - crew of 5) [4650 h]; Tunnel Carpenter (crew of 4) [3720 h]; Tunnel Concrete Workers (Crew of 4) [3720 h]; Locomotive [744 h]; Muck Car [744 h]; Gantry Crane [744 h]; 500T Lifting Crane [744 h]; Drilling Rig [744 h] | CONS | 2565 | TNN |
| 8250NB1360 |  | Pass NB CP14 +300m | milestone | 0d | 2014-09-22 A | 2014-09-22 A | 8250CC10070 | 100% | 2014-09-30 | 2014-09-30 | 825_7-day w/o holidays |  | CONS | 2565 | TNN |
| 8250NB1380 |  | Pass NB CP15 +200m | milestone | 0d | 2014-10-26 A | 2014-10-26 A | 8250CC10080 | 100% | 2014-10-31 | 2014-10-31 | 825_7-day w/o holidays |  | CONS | 2565 | TNN |
| 8250NB1200 |  | Install Brackets (Supply by 846) - NB |  | 274d | 2014-12-29 A | 2016-09-23 A | 8250NB1184 FF, 8250NB1184 SS | 100% | 2015-03-23 | 2016-02-24 |  | General tunnel worker (Shift 2 - crew of 10) [27400 h]; General tunnel worker (Shift 1 - crew of 10) [27400 h]; 500T Lifting Crane [2740 h]; Crawler Crane [2740 h]; Welding Machine [2740 h] | CONS | 2565 | TNN |

| ID | WBS | Activity | Duration | Start | Finish | Predecessors | Complete | Planned start | Planned finish | Calendar | Resources | 825 Phase | 825 Location | 825 Sub-location |
| --- | --- | --- | --- | --- | --- | --- | --- | --- | --- | --- | --- | --- | --- | --- |
|  | 3 | **INVERT SLABS AND WALKWAYS (NB)** |  | 2014-12-31 | 2015-08-29 |  |  |  |  |  |  |  |  |  |
|  | 1 | **NB INVERT SLABS** |  | 2014-12-31 | 2015-08-22 |  |  |  |  |  |  |  |  |  |
|  | 1 | **NB TUNNELS** |  | 2014-12-31 | 2015-04-08 |  |  |  |  |  |  |  |  |  |
| 8250NB1182 |  | 1st Stage Concrete for NB Bored Tunnel Invert Slabs - (654 Rings) - 483/654 Rings Completed; 171 Rings Balance | 80d | 2014-12-31 A | 2015-04-08 A | 8250CC10035 FS-3.33d | 100% | 2014-12-31 | 2015-04-11 |  | NB Tunnel Invert Slabs [224 m3] | CONS | 2565 | TNN |
| 8250NB1184 |  | 1st Stage Concrete for NB Bored Tunnel Invert Slabs - (649 Rings) - 433/649 Rings Completed; 216 Rings Balance | 80d | 2014-12-31 A | 2015-04-08 A | 8250NB1182 SS | 100% | 2014-12-31 | 2015-04-11 |  | NB Tunnel Invert Slabs [286 m3] | CONS | 2565 | TNN |
|  | 2 | **NB CROSS PASSAGES** |  | 2015-05-01 | 2015-08-22 |  |  |  |  |  |  |  |  |  |
| 8250NB2090 |  | 1st Stage Concrete for NB Bored Tunnel Invert Slabs - CP15 | 2d | 2015-05-01 A | 2015-05-05 A | 8250CC11380 | 100% | 2015-04-30 | 2015-05-02 |  | NB Tunnel Invert Slabs [40 m3] |  |  |  |
| 8250NB2100 |  | 1st Stage Concrete for NB Bored Tunnel Invert Slabs - CP15(End) | 3d | 2015-05-01 A | 2015-05-05 A | 8250CC11545 | 100% | 2015-06-30 | 2015-07-03 |  | NB Tunnel Invert Slabs [40 m3] |  |  |  |
| 8250NB2080 |  | 1st Stage Concrete for NB Bored Tunnel Invert Slabs - CP14 | 2d | 2015-05-18 A | 2015-05-23 A | 8250CC11820 | 100% | 2015-05-11 | 2015-05-12 |  | NB Tunnel Invert Slabs [40 m3] |  |  |  |
| 8250NB2070 |  | 1st Stage Concrete for NB Bored Tunnel Invert Slabs - CP13 | 2d | 2015-05-30 A | 2015-06-03 A | 8250CC11860 | 100% | 2015-07-10 | 2015-07-11 |  | NB Tunnel Invert Slabs [40 m3] |  |  |  |
| 8250NB2060 |  | 1st Stage Concrete for NB Bored Tunnel Invert Slabs - CP12 | 2d | 2015-06-10 A | 2015-06-13 A | 8250CC11790 | 100% | 2015-07-08 | 2015-07-09 |  | NB Tunnel Invert Slabs [40 m3] |  |  |  |
| 8250NB2050 |  | 1st Stage Concrete for NB Bored Tunnel Invert Slabs - CP11 | 2d | 2015-07-06 A | 2015-07-09 A | 8250CC11730 | 100% | 2015-08-07 | 2015-08-08 |  | NB Tunnel Invert Slabs [40 m3] |  |  |  |
| 8250NB2040 |  | 1st Stage Concrete for NB Bored Tunnel Invert Slabs - CP10 | 2d | 2015-07-20 A | 2015-07-23 A | 8250CC11700 | 100% | 2015-07-31 | 2015-08-01 |  | NB Tunnel Invert Slabs [40 m3] |  |  |  |
| 8250NB2030 |  | 1st Stage Concrete for NB Bored Tunnel Invert Slabs - CP09 | 2d | 2015-07-27 A | 2015-07-31 A | 8250CC11680 | 100% | 2015-08-31 | 2015-09-01 |  | NB Tunnel Invert Slabs [40 m3] |  |  |  |
| 8250NB2020 |  | 1st Stage Concrete for NB Bored Tunnel Invert Slabs - CP08 | 2d | 2015-08-08 A | 2015-08-12 A | 8250NB2010 | 100% | 2015-09-02 | 2015-09-03 |  | NB Tunnel Invert Slabs [40 m3] |  |  |  |
| 8250NB2010 |  | 1st Stage Concrete for NB Bored Tunnel Invert Slabs - CP07 | 2d | 2015-08-17 A | 2015-08-22 A | 8250NB2050 | 100% | 2015-08-31 | 2015-09-01 |  | NB Tunnel Invert Slabs [40 m3] |  |  |  |
|  | 2 | **NB WALKWAYS** |  | 2014-12-31 | 2015-08-29 |  |  |  |  |  |  |  |  |  |
|  | 1 | **NB TUNNELS** |  | 2014-12-31 | 2015-08-28 |  |  |  |  |  |  |  |  |  |
| 8250CC10105 |  | 2nd Stage Concrete for NB Bored Tunnel Walkway - (654 Rings) - 475/654 Rings Completed; 179 Rings Balance | 86d | 2014-12-31 A | 2015-04-25 A | 8250CC10040 | 100% | 2014-12-31 | 2015-04-18 |  | NB Tunnel Walkways [1531 m3] |  |  |  |
| 8250CC10110 |  | 2nd Stage Concrete for NB Bored Tunnel Walkway - (649 Rings) - 321/654 Rings Completed; 333 Rings Balance | 86d | 2014-12-31 A | 2015-04-25 A | 8250CC10105 SS | 100% | 2014-12-31 | 2015-04-18 |  | Tunnel Carpenter (crew of 4) [3440 h]; Tunnel Concrete Workers (Crew of 4) [3440 h]; Tunnel Steel & Rebar Workers (crew of 4) [3440 h]; General tunnel worker (Shift 1 - crew of 10) [8600 h]; Concrete Pump [860 h]; Grouting Machine [860 h]; Crawler Crane [860 h]; NB Tunnel Walkways [1949 m3] | CONS | 2565 | TNN |
| 8250CC20420 |  | 3rd Stage Upper Walkway Concrete (NB) - From CP13(0905~1052) | 4d | 2015-04-07 A | 2015-04-27 A | 8250CC11570, 8250CC20410 | 100% | 2015-05-15 | 2015-05-19 | 825_24 Hours w/o holidays | NB Tunnel Walkways [20 m3] |  |  |  |
| 8250CC20100 |  | 3rd Stage Upper Walkway Concrete (NB) - From CP15(1167~1305) | 4d | 2015-04-27 A | 2015-05-15 A | 8250NBDIS0540, 8250NBDIS0520, 8250CC11545 | 100% | 2015-05-07 | 2015-05-11 | 825_24 Hours w/o holidays | NB Tunnel Walkways [20 m3] | CONS | 2565 | TNN |
| 8250CC20410 |  | 3rd Stage Upper Walkway Concrete (NB) - From CP14(1053~1166) | 4d | 2015-05-18 A | 2015-05-28 A | 8250CC11560, 8250CC20100 | 100% | 2015-05-04 | 2015-05-08 | 825_24 Hours w/o holidays | NB Tunnel Walkways [20 m3] |  |  |  |
| 8250CC20460 |  | 3rd Stage Upper Walkway Concrete (NB) - From CP09(0332~0473) | 4d | 2015-06-22 A | 2015-06-29 A | 8250CC20450, 8250CC11610 | 100% | 2015-08-08 | 2015-08-12 | 825_24 Hours w/o holidays | NB Tunnel Walkways [20 m3] |  |  |  |
| 8250CC20450 |  | 3rd Stage Upper Walkway Concrete (NB) - From CP10(0474~0627) | 4d | 2015-07-02 A | 2015-08-03 A | 8250CC20440, 8250CC11600 | 100% | 2015-08-04 | 2015-08-08 | 825_24 Hours w/o holidays | NB Tunnel Walkways [20 m3] |  |  |  |
| 8250CC20470 |  | 3rd Stage Upper Walkway Concrete (NB) - From CP08(0196~0331) | 4d | 2015-07-06 A | 2015-08-03 A | 8250CC20460, 8250CC11890 | 100% | 2015-08-12 | 2015-08-16 | 825_24 Hours w/o holidays | NB Tunnel Walkways [20 m3] |  |  |  |
| 8250CC20480 |  | 3rd Stage Upper Walkway Concrete (NB) - From CP07(0001~0195) | 4d | 2015-07-29 A | 2015-08-22 A | 8250CC20470 FS-2d, 8250CC11900 FS-2d | 100% | 2015-08-14 | 2015-08-18 | 825_24 Hours w/o holidays | NB Tunnel Walkways [20 m3] |  |  |  |
| 8250CC20440 |  | 3rd Stage Upper Walkway Concrete (NB) - From CP11(0628~0757) | 4d | 2015-08-15 A | 2015-08-19 A | 8250CC20430 | 100% | 2015-07-31 | 2015-08-04 | 825_24 Hours w/o holidays | NB Tunnel Walkways [20 m3] |  |  |  |
| 8250CC20430 |  | 3rd Stage Upper Walkway Concrete (NB) - From CP12(0758~0904) | 4d | 2015-08-24 A | 2015-08-28 A | 8250CC20420, 8250CC11580 | 100% | 2015-05-07 | 2015-05-11 | 825_24 Hours w/o holidays | NB Tunnel Walkways [20 m3] |  |  |  |

Notes:
- 8250NB1182: Current Status: 28Feb2015 - / 35Rings/(654-483)Rings = 20%
- 8250NB1184: Current Status: 28Feb2015 - / 28Rings/(648-454)Rings = 14%
- 8250CC10105: Current Status: 28Feb2015 - 23Rings/(648-380)Rings = / 8.6 0%
- 8250CC10110: Current Status: 28Feb2015 - / 33Rings/(654-475)Rings = 18.40%

| ID | WBS | Activity | Duration | Start | Finish | Predecessors | Complete | Planned start | Planned finish | Calendar | Resources |
| --- | --- | --- | --- | --- | --- | --- | --- | --- | --- | --- | --- |
|  | 2 | **NB CROSS PASSAGES** |  | 2015-05-30 | 2015-08-29 |  |  |  |  |  |  |
| 8250CC20160 |  | 2nd & 3rd Stage Upper Walkway Concrete (NB) - CP12 | 6d | 2015-05-30 A | 2015-06-16 A | 8250NB2060 | 100% | 2015-06-30 | 2015-07-06 | 825_24 Hours w/o holidays | NB Tunnel Walkways [60 m3] |
| 8250CC20180 |  | 2nd & 3rd Stage Upper Walkway Concrete (NB) - CP14 | 6d | 2015-05-30 A | 2015-06-09 A | 8250NB2080 | 100% | 2015-06-30 | 2015-07-06 | 825_24 Hours w/o holidays | NB Tunnel Walkways [60 m3] |
| 8250CC20170 |  | 2nd & 3rd Stage Upper Walkway Concrete (NB) - CP13 | 6d | 2015-06-01 A | 2015-06-12 A | 8250NB2070 | 100% | 2015-06-30 | 2015-07-06 | 825_24 Hours w/o holidays | NB Tunnel Walkways [60 m3] |
| 8250CC20190 |  | 2nd & 3rd Stage Upper Walkway Concrete (NB) - CP15 | 6d | 2015-06-26 A | 2015-07-04 A | 8250NB2090 | 100% | 2015-07-31 | 2015-08-06 | 825_24 Hours w/o holidays | NB Tunnel Walkways [60 m3] |
| 8250CC20150 |  | 2nd & 3rd Stage Upper Walkway Concrete (NB) - CP11 | 6d | 2015-07-06 A | 2015-07-13 A | 8250NB2050 | 100% | 2015-07-31 | 2015-08-06 | 825_24 Hours w/o holidays | NB Tunnel Walkways [60 m3] |
| 8250CC20140 |  | 2nd & 3rd Stage Upper Walkway Concrete (NB) - CP10 | 6d | 2015-07-24 A | 2015-07-29 A | 8250NB2040 | 100% | 2015-07-31 | 2015-08-06 | 825_24 Hours w/o holidays | NB Tunnel Walkways [60 m3] |
| 8250CC20130 |  | 2nd & 3rd Stage Upper Walkway Concrete (NB) - CP09 | 6d | 2015-08-03 A | 2015-08-10 A | 8250NB2030 | 100% | 2015-09-01 | 2015-09-07 | 825_24 Hours w/o holidays | NB Tunnel Walkways [60 m3] |
| 8250CC20120 |  | 2nd & 3rd Stage Upper Walkway Concrete (NB) - CP08 | 6d | 2015-08-20 A | 2015-08-26 A | 8250NB2020 | 100% | 2015-08-31 | 2015-09-06 | 825_24 Hours w/o holidays | NB Tunnel Walkways [60 m3] |
| 8250CC20110 |  | 2nd & 3rd Stage Upper Walkway Concrete (NB) - CP07 | 6d | 2015-08-25 A | 2015-08-29 A | 8250NB2010 | 100% | 2015-08-31 | 2015-09-06 | 825_24 Hours w/o holidays | NB Tunnel Walkways [60 m3] |
|  | 4 | **NB STUB TUNNELS** |  | 2015-03-26 | 2015-06-25 |  |  |  |  |  |  |
| 8250CC10280 |  | NB Stub Tunnels - Mapping & Survey | 2d | 2015-03-26 A | 2015-03-27 A | 8250MSB05, 8250NBDIS0530, 8250NBDIS0540, 8250NBDIS0510 FS-12d | 100% | 2015-03-31 | 2015-04-01 |  |  |
| 8250CC10290 |  | NB Stub Tunnels - Shotcrete & Waterproofing | 2d | 2015-03-28 A | 2015-03-31 A | 8250CC10280 | 100% | 2015-04-02 | 2015-04-08 |  |  |
| 8250CC10300 |  | NB Stub Tunnels - Clearing & Preparation | 2d | 2015-04-01 A | 2015-04-03 A | 8250CC10290 | 100% | 2015-04-30 | 2015-05-02 |  |  |
| 8250CC10310 |  | NB Stub Tunnels - Installation of Dowel Bars | 7d | 2015-04-13 A | 2015-04-14 A | 8250CC10300 FS+4d | 100% | 2015-05-08 | 2015-05-15 |  |  |
| 8250CC10320 |  | NB Stub Tunnels - Smoothing of TBM Ribs | 7d | 2015-04-13 A | 2015-04-14 A | 8250CC10310 SS | 100% | 2015-05-08 | 2015-05-15 |  |  |
| 8250CC20210 |  | NB Stub Tunnels - Invert Slab - Waterproofing | 5d | 2015-04-13 A | 2015-04-18 A | 8250CC10320 | 100% | 2015-05-16 | 2015-05-21 |  |  |
| 8250CC20220 |  | NB Stub Tunnels - Invert Slab - Rebar Fixing/Installation | 4d | 2015-04-14 A | 2015-04-24 A | 8250CC20210 | 100% | 2015-04-30 | 2015-05-05 |  |  |
| 8250CC20230 |  | NB Stub Tunnels - Invert Slab - Drainage, Catchpit & Formworks Installation | 3d | 2015-04-22 A | 2015-04-24 A | 8250CC20220 | 100% | 2015-04-30 | 2015-05-04 |  |  |
| 8250CC20240 |  | NB Stub Tunnels - Invert Slab - Concreting Works | 1d | 2015-04-24 A | 2015-04-24 A | 8250CC20230 | 100% | 2015-05-05 | 2015-05-05 |  | NB Stud Tunnel [30 m3] |
| 8250CC20250 |  | NB Stub Tunnels - Tunnel Lining - Falseworks | 10d | 2015-04-27 A | 2015-06-09 A | 8250CC20240 | 100% | 2015-04-30 | 2015-05-12 |  |  |
| 8250CC20260 |  | NB Stub Tunnels - Tunnel Lining - Waterproofing Works/Application (Top) | 7d | 2015-05-11 A | 2015-05-23 A | 8250CC20250 SS+4d | 100% | 2015-06-01 | 2015-06-08 |  |  |
| 8250CC20270 |  | NB Stub Tunnels - Tunnel Lining - Rebar Fixing/Installation (Top) | 4d | 2015-05-24 A | 2015-06-06 A | 8250CC20260 | 100% | 2015-06-09 | 2015-06-12 |  |  |
| 8250CC20290 |  | NB Stub Tunnels - Tunnel Lining - Stop End/Water Stop Installation | 2d | 2015-06-01 A | 2015-06-10 A | 8250CC20280 | 100% | 2015-07-17 | 2015-07-18 |  |  |
| 8250CC20280 |  | NB Stub Tunnels - Tunnel Lining - Aluminum Panel Installation | 4d | 2015-06-06 A | 2015-06-09 A | 8250CC20250 | 100% | 2015-07-13 | 2015-07-16 |  |  |
| 8250CC20300 |  | NB Stub Tunnels - Tunnel Lining - Concreting Works | 1d | 2015-06-10 A | 2015-06-10 A | 8250CC20290, 8250CC20270 | 100% | 2015-07-06 | 2015-07-06 |  | NB Stud Tunnel [60 m3] |
| 8250CC20310 |  | NB Stub Tunnels - Tunnel Lining - Concrete Curing | 5d | 2015-06-11 A | 2015-06-14 A | 8250CC20300 | 100% | 2015-07-07 | 2015-07-11 |  |  |
| 8250CC20320 |  | NB Stub Tunnels - Tunnel Lining - Formworks Dismantling | 3d | 2015-06-12 A | 2015-06-15 A | 8250CC20310 | 100% | 2015-07-13 | 2015-07-15 |  |  |
| 8250CC20330 |  | NB Stub Tunnels - Walkways - Clearing & Preparation | 2d | 2015-06-16 A | 2015-06-17 A | 8250CC20320 | 100% | 2015-06-30 | 2015-07-02 |  |  |
| 8250CC20340 |  | NB Stub Tunnels - Walkways - Formworks, Rebar & Concreting Works (Stage 2) | 3d | 2015-06-17 A | 2015-06-20 A | 8250CC20330 | 100% | 2015-07-03 | 2015-07-06 |  | NB Stud Tunnel [15 m3] |
| 8250CC20350 |  | NB Stub Tunnels - Walkways - Formworks, Rebar & Concreting Works (Stage 3) | 3d | 2015-06-22 A | 2015-06-25 A | 8250CC20340 | 100% | 2015-07-07 | 2015-07-09 |  | NB Stud Tunnel [15 m3] |

| ID | WBS | Activity | Duration | Start | Finish | Predecessors | Complete | Planned start | Planned finish | Resources | 825 Phase | 825 Location | 825 Sub-location |
| --- | --- | --- | --- | --- | --- | --- | --- | --- | --- | --- | --- | --- | --- |
|  | 5 | **GROUND TREATMENT WORKS** |  | 2010-02-01 | 2013-08-12 |  |  |  |  |  |  |  |  |
|  | 9 | **BORED TUNNEL BREAK-IN AREA - FROM GROUND** |  | 2011-02-14 | 2011-05-11 |  |  |  |  |  |  |  |  |
| 8250GT1000 |  | Drill and Install TAM Pipes | 60d | 2011-02-14 A | 2011-03-18 A | 8250ELS520 FF, 8250ELS520 SS | 100% | 2010-11-30 | 2011-02-14 | Drilling Team (crew of 4) [2640 h]; General Labor (Crew of 4) [2640 h]; Ground Treatment team (crew of 5) [3300 h]; Survey team (crew of 4) [2640 h]; Drilling Rig [660 h]; Lorry Crane [22 h] | CONS | 2595 | BKIN |
| 8250GT1020 |  | Bentonite / Cement Grout | 21d | 2011-03-01 A | 2011-03-25 A | 8250GT1000 FS-13.2d | 100% | 2011-01-28 | 2011-02-24 | Drilling Team (crew of 4) [924 h]; General Labor (Crew of 4) [924 h]; Ground Treatment team (crew of 5) [1155 h]; Survey team (crew of 4) [924 h]; Grouting Machine [231 h] | CONS | 2595 | BKIN |
| 8250GT1040 |  | Mineral Gel Grout | 36d | 2011-03-25 A | 2011-03-29 A | 8250GT1020 SS+13.2d | 100% | 2011-02-15 | 2011-03-29 | Drilling Team (crew of 4) [1584 h]; General Labor (Crew of 4) [1584 h]; Ground Treatment team (crew of 5) [1980 h]; Survey team (crew of 4) [1584 h]; Grouting Machine [528 h] | CONS | 2595 | BKIN |
| 8250GT1060 |  | Test | 6d | 2011-04-28 A | 2011-05-11 A | 8250GT1040 | 100% | 2011-03-30 | 2011-04-06 | Drilling Team (crew of 4) [264 h]; General Labor (Crew of 4) [264 h]; Ground Treatment team (crew of 5) [330 h]; Survey team (crew of 4) [264 h] | CONS | 2595 | BKIN |
|  | 10 | **SAN TIN HIGHWAYS FOOTBRIDGE - FROM GROUND** |  | 2010-02-01 | 2010-05-27 |  |  |  |  |  |  |  |  |
| 8250GT1080 |  | Drill and Install TAM Pipes | 48d | 2010-02-01 A | 2010-02-01 A | 8250AC120 SS, 8250DA1100, 8250DA1245 | 100% | 2010-02-01 | 2010-03-31 | Drilling Team (crew of 4) [2112 h]; General Labor (Crew of 4) [2112 h]; Ground Treatment team (crew of 5) [2640 h]; Survey team (crew of 4) [2112 h]; Drilling Rig [297 h]; Lorry Crane [44 h] | CONS | 2595 | STFB |
| 8250GT1100 |  | Bentonite / Cement Grout | 6d | 2010-04-01 A | 2010-04-01 A | 8250GT1080 | 100% | 2010-04-01 | 2010-04-12 | Drilling Team (crew of 4) [264 h]; General Labor (Crew of 4) [264 h]; Ground Treatment team (crew of 5) [330 h]; Survey team (crew of 4) [264 h]; Grouting Machine [99 h] | CONS | 2595 | STFB |
| 8250GT1120 |  | Mineral Gel Grout | 36d | 2010-04-13 A | 2010-04-13 A | 8250GT1100 | 100% | 2010-04-13 | 2010-05-26 | Drilling Team (crew of 4) [1584 h]; General Labor (Crew of 4) [1584 h]; Ground Treatment team (crew of 5) [1980 h]; Survey team (crew of 4) [1584 h]; Grouting Machine [231 h] | CONS | 2595 | STFB |
| 8250GT1140 |  | Test | 6d | 2010-05-27 A | 2010-05-27 A | 8250GT1120 | 100% | 2010-05-27 | 2010-06-03 | Drilling Team (crew of 4) [264 h]; General Labor (Crew of 4) [264 h]; Ground Treatment team (crew of 5) [330 h]; Survey team (crew of 4) [264 h] | CONS | 2595 | STFB |
|  | 1 | **CP 7** |  | 2011-04-18 | 2011-05-25 |  |  |  |  |  |  |  |  |
| 8250GT1160 |  | Mobilization | 4d | 2011-04-18 A | 2011-04-21 A | 8250AC100 SS | 100% | 2010-11-02 | 2010-11-06 | General Labor (Crew of 4) [176 h]; Ground Treatment team (crew of 5) [220 h]; Survey team (crew of 4) [176 h]; Drilling Team (crew of 4) [176 h] | CONS | 2595 | CP07 |
| 8250GT1180 |  | Drill and Install TAM Pipes | 42d | 2011-04-22 A | 2011-05-07 A | 8250GT1160, 8250GT1140 | 100% | 2010-11-06 | 2010-12-28 | Drilling Team (crew of 4) [1848 h]; General Labor (Crew of 4) [1848 h]; Ground Treatment team (crew of 5) [2310 h]; Survey team (crew of 4) [1848 h]; Lorry Crane [99 h]; Drilling Rig [462 h] | CONS | 2595 | CP07 |
| 8250GT1200 |  | Bentonite / Cement Grout | 7d | 2011-04-30 A | 2011-05-11 A | 8250GT1180 | 100% | 2010-12-28 | 2011-01-06 | Drilling Team (crew of 4) [308 h]; General Labor (Crew of 4) [308 h]; Ground Treatment team (crew of 5) [385 h]; Survey team (crew of 4) [308 h]; Grouting Machine [77 h] | CONS | 2595 | CP07 |
| 8250GT1220 |  | Mineral Gel Grout | 36d | 2011-05-12 A | 2011-05-21 A | 8250GT1200 | 100% | 2011-01-06 | 2011-02-21 | Grouting Machine [396 h]; Drilling Team (crew of 4) [1584 h]; General Labor (Crew of 4) [1584 h]; Ground Treatment team (crew of 5) [1980 h]; Survey team (crew of 4) [1584 h] | CONS | 2595 | CP07 |
| 8250GT1240 |  | Test | 6d | 2011-05-14 A | 2011-05-25 A | 8250GT1220 | 100% | 2011-02-21 | 2011-02-28 | Drilling Team (crew of 4) [264 h]; General Labor (Crew of 4) [264 h]; Ground Treatment team (crew of 5) [330 h]; Survey team (crew of 4) [264 h] | CONS | 2595 | CP07 |
|  | 2 | **CP 8** |  | 2011-06-24 | 2011-09-16 |  |  |  |  |  |  |  |  |
| 8250GT1260 |  | Mobilization | 4d | 2011-06-24 A | 2011-06-24 A | 8250GT1180 | 100% | 2010-12-28 | 2011-01-03 | Drilling Team (crew of 4) [176 h]; General Labor (Crew of 4) [176 h]; Survey team (crew of 4) [176 h]; Ground Treatment team (crew of 5) [220 h] | CONS | 2595 | CP08 |
| 8250GT1280 |  | Drill and Install TAM Pipes | 42d | 2011-08-06 A | 2011-08-23 A | 8250GT1260 | 100% | 2011-01-03 | 2011-02-24 | Drilling Team (crew of 4) [1848 h]; General Labor (Crew of 4) [1848 h]; Ground Treatment team (crew of 5) [2310 h]; Survey team (crew of 4) [1848 h]; Lorry Crane [99 h]; Drilling Rig [462 h] | CONS | 2595 | CP08 |
| 8250GT1300 |  | Bentonite / Cement Grout | 7d | 2011-08-25 A | 2011-08-27 A | 8250GT1280 | 100% | 2011-02-24 | 2011-03-04 | Drilling Team (crew of 4) [308 h]; General Labor (Crew of 4) [308 h]; Ground Treatment team (crew of 5) [385 h]; Survey team (crew of 4) [308 h]; Grouting Machine [77 h] | CONS | 2595 | CP08 |
| 8250GT1320 |  | Mineral Gel Grout | 36d | 2011-08-29 A | 2011-09-10 A | 8250GT1300 | 100% | 2011-03-04 | 2011-04-18 | Survey team (crew of 4) [1584 h]; Drilling Team (crew of 4) [1584 h]; General Labor (Crew of 4) [1584 h]; Ground Treatment team (crew of 5) [1980 h]; Grouting Machine [396 h] | CONS | 2595 | CP08 |
| 8250GT1340 |  | Test | 6d | 2011-09-12 A | 2011-09-16 A | 8250GT1320 | 100% | 2011-04-18 | 2011-04-28 | Survey team (crew of 4) [264 h]; Drilling Team (crew of 4) [264 h]; General Labor (Crew of 4) [264 h]; Ground Treatment team (crew of 5) [330 h] | CONS | 2595 | CP08 |
|  | 3 | **CP 10** |  | 2012-06-18 | 2012-09-18 |  |  |  |  |  |  |  |  |
| 8250GT1640 |  | Mobilization | 4d | 2012-06-18 A | 2012-07-27 A | 8250DA1960, 8250DA1840, 8250SB1400 FS+13.2d | 100% | 2012-09-15 | 2012-09-19 | Survey team (crew of 4) [220 h]; Drilling Team (crew of 4) [220 h]; General Labor (Crew of 4) [220 h]; Ground Treatment team (crew of 5) [275 h]; Gantry Crane [55 h]; Muck Car [55 h]; Locomotive [55 h] | CONS | 2595 | CP10 |
| 8250GT1650 |  | Drill and Install TAM Pipes | 42d | 2012-07-18 A | 2012-08-18 A | 8250GT1640 | 100% | 2012-11-21 | 2013-01-11 | Survey team (crew of 4) [2310 h]; Drilling Team (crew of 4) [2310 h]; General Labor (Crew of 4) [2310 h]; Ground Treatment team (crew of 5) [2887.5 h]; Drilling Rig [264 h] | CONS | 2595 | CP10 |
| 8250GT1660 |  | Bentonite/ Cement Grout | 7d | 2012-07-18 A | 2012-08-22 A | 8250GT1650 | 100% | 2012-10-22 | 2012-10-30 | Survey team (crew of 4) [385 h]; Drilling Team (crew of 4) [385 h]; General Labor (Crew of 4) [385 h]; Ground Treatment team (crew of 5) [481.25 h]; Drilling Rig [96.25 h] | CONS | 2595 | CP10 |
| 8250GT1680 |  | Mineral Gel Grout | 36d | 2012-07-20 A | 2012-08-29 A | 8250GT1660 | 100% | 2012-09-08 | 2012-10-22 | Survey team (crew of 4) [1980 h]; Drilling Team (crew of 4) [1980 h]; General Labor (Crew of 4) [1980 h]; Ground Treatment team (crew of 5) [2475 h]; Muck Car [495 h]; Locomotive [495 h]; Grouting Machine [495 h] | CONS | 2595 | CP10 |
| 8250GT1700 |  | Test | 5.85d | 2012-09-12 A | 2012-09-18 A | 8250GT1680 | 100% | 2012-10-31 | 2012-11-06 | Survey team (crew of 4) [320 h]; Drilling Team (crew of 4) [320 h]; General Labor (Crew of 4) [320 h]; Ground Treatment team (crew of 5) [400 h] | CONS | 2595 | CP10 |

| ID | WBS | Activity | Duration | Start | Finish | Predecessors | Complete | Planned start | Planned finish | Resources | 825 Phase | 825 Location | 825 Sub-location |
| --- | --- | --- | --- | --- | --- | --- | --- | --- | --- | --- | --- | --- | --- |
|  | 4 | **CP 11** |  | 2013-04-16 | 2013-06-06 |  |  |  |  |  |  |  |  |
| 8250GT1720 |  | Set up (within Tunnel) | 8d | 2013-04-16 A | 2013-04-20 A | 8250GT1480 SS+5.6d, 8250DA1960, 8250DA1840 FS+48d | 100% | 2013-07-08 | 2013-07-17 | General tunnel worker (Shift 1 - crew of 10) [1000 h]; General tunnel worker (Shift 2 - crew of 10) [1000 h]; Tunnel Carpenter (crew of 4) [400 h]; Scaffolders in Tunnel (crew of 6) [600 h]; Tunnel Concrete Workers (Crew of 4) [400 h]; Tunnel Steel & Rebar Workers (crew of 4) [400 h] | CONS | 2595 | CP11 |
| 8250GT1740 |  | Drill | 30d | 2013-04-24 A | 2013-05-16 A | 8250GT1720 | 100% | 2013-07-15 | 2013-08-19 | Drilling Team (crew of 4) [1500 h]; General Labor (Crew of 4) [1500 h]; Ground Treatment team (crew of 5) [1875 h]; Scaffolders in Tunnel (crew of 6) [1875 h] | CONS | 2595 | CP11 |
| 8250GT1760 |  | Chemical (Silicate Gel) Grout | 23d | 2013-05-17 A | 2013-06-06 A | 8250GT1740 | 100% | 2013-08-09 | 2013-09-05 | General tunnel worker (Shift 1 - crew of 10) [2875 h]; Tunnel Concrete Workers (Crew of 4) [1150 h] | CONS | 2595 | CP11 |
| 8250GT1780 |  | Test | 8d | 2013-06-01 A | 2013-06-06 A | 8250GT1760 | 100% | 2013-08-29 | 2013-09-07 | General tunnel worker (Shift 1 - crew of 10) [1000 h]; General Labor (Crew of 4) [400 h]; Ground Treatment team (crew of 5) [500 h]; Tunnel Concrete Workers (Crew of 4) [400 h] | CONS | 2595 | CP11 |
|  | 5 | **CP 12** |  | 2011-06-03 | 2011-08-25 |  |  |  |  |  |  |  |  |
| 8250GT1360 |  | Mobilization | 4d | 2011-06-03 A | 2011-06-04 A | 8250GT1280, 8250AC130 | 100% | 2011-02-24 | 2011-03-01 | Survey team (crew of 4) [176 h]; Drilling Team (crew of 4) [176 h]; General Labor (Crew of 4) [176 h]; Ground Treatment team (crew of 5) [220 h] | CONS | 2595 | CP12 |
| 8250GT1380 |  | Drill and Install TAM Pipes | 48d | 2011-06-06 A | 2011-07-08 A | 8250GT1360 | 100% | 2011-03-01 | 2011-05-03 | Survey team (crew of 4) [2112 h]; General Labor (Crew of 4) [2112 h]; Ground Treatment team (crew of 5) [2640 h]; Drilling Rig [528 h]; Lorry Crane [110 h]; Drilling Team (crew of 4) [2112 h] | CONS | 2595 | CP12 |
| 8250GT1440 |  | Test | 6d | 2011-06-24 A | 2011-08-25 A | 8250GT1420 | 100% | 2011-06-24 | 2011-07-02 | Survey team (crew of 4) [264 h]; Drilling Team (crew of 4) [264 h]; General Labor (Crew of 4) [264 h]; Ground Treatment team (crew of 5) [330 h] | CONS | 2595 | CP12 |
| 8250GT1400 |  | Bentonite / Cement Grout | 7d | 2011-07-09 A | 2011-07-16 A | 8250GT1380 | 100% | 2011-05-03 | 2011-05-12 | Survey team (crew of 4) [308 h]; Drilling Team (crew of 4) [308 h]; General Labor (Crew of 4) [308 h]; Ground Treatment team (crew of 5) [385 h]; Grouting Machine [77 h] | CONS | 2595 | CP12 |
| 8250GT1420 |  | Mineral Gel Grout | 36d | 2011-07-18 A | 2011-08-22 A | 8250GT1400 | 100% | 2011-05-12 | 2011-06-24 | Survey team (crew of 4) [1584 h]; Drilling Team (crew of 4) [1584 h]; General Labor (Crew of 4) [1584 h]; Ground Treatment team (crew of 5) [1980 h]; Grouting Machine [396 h] | CONS | 2595 | CP12 |
|  | 6 | **CP 13** |  | 2013-06-10 | 2013-06-29 |  |  |  |  |  |  |  |  |
| 8250GT1800 |  | Drill | 15d | 2013-06-10 A | 2013-06-14 A | 8250SB1460, 8250GT1740 SS-4d | 100% | 2013-07-10 | 2013-07-27 | General tunnel worker (Shift 1 - crew of 10) [1875 h]; General tunnel worker (Shift 2 - crew of 10) [1875 h]; Tunnel Carpenter (crew of 4) [750 h]; Scaffolders in Tunnel (crew of 6) [1125 h]; Tunnel Concrete Workers (Crew of 4) [750 h]; Tunnel Steel & Rebar Workers (crew of 4) [750 h] | CONS | 2595 | CP13 |
| 8250CC10120 |  | Bentonite/Cement Grout/Meneral Gel Grout | 20d | 2013-06-25 A | 2013-06-29 A | 8250GT1860 | 100% | 2013-08-12 | 2013-09-04 |  | CONS | 2595 | CP13 |
| 8250GT1860 |  | Chemical (Silicate Gel) Grout | 23d | 2013-06-25 A | 2013-06-29 A | 8250GT1800 | 100% | 2013-07-23 | 2013-08-19 | General tunnel worker (Shift 1 - crew of 10) [2875 h]; Tunnel Concrete Workers (Crew of 4) [1150 h] | CONS | 2595 | CP13 |
| 8250GT1880 |  | Test | 8d | 2013-06-27 A | 2013-06-29 A | 8250CC10120 | 100% | 2013-08-28 | 2013-09-06 | General tunnel worker (Shift 1 - crew of 10) [1000 h]; General Labor (Crew of 4) [400 h]; Ground Treatment team (crew of 5) [500 h]; Tunnel Concrete Workers (Crew of 4) [400 h] | CONS | 2595 | CP13 |
|  | 7 | **CP 14** |  | 2012-08-20 | 2012-12-16 |  |  |  |  |  |  |  |  |
| 8250GT1900 |  | Mobilization | 4d | 2012-08-20 A | 2012-08-23 A | 8250DA1960, 8250AC140, 8250DA1840 | 100% | 2012-12-18 | 2012-12-21 | Survey team (crew of 4) [220 h]; Drilling Team (crew of 4) [220 h]; General Labor (Crew of 4) [220 h]; Ground Treatment team (crew of 5) [275 h]; Gantry Crane [55 h]; Muck Car [55 h]; Locomotive [55 h] | CONS | 2595 | CP14 |
| 8250GT1920 |  | Drill and Install TAM Pipes | 42d | 2012-08-24 A | 2012-11-06 A | 8250GT1900 | 100% | 2012-12-22 | 2013-02-15 | Survey team (crew of 4) [2310 h]; Drilling Team (crew of 4) [2310 h]; General Labor (Crew of 4) [2310 h]; Ground Treatment team (crew of 5) [2887.5 h]; Drilling Rig [264 h] | CONS | 2595 | CP14 |
| 8250GT1940 |  | Bentonite / Cement Grout | 6d | 2012-11-07 A | 2012-11-13 A | 8250GT1920 | 100% | 2012-12-10 | 2012-12-15 | Survey team (crew of 4) [330 h]; Drilling Team (crew of 4) [330 h]; General Labor (Crew of 4) [330 h]; Ground Treatment team (crew of 5) [412.5 h]; Locomotive [82.5 h]; Muck Car [82.5 h]; Grouting Machine [66 h] | CONS | 2595 | CP14 |
| 8250GT1960 |  | Chemical (Silicate Gel) Grout | 25d | 2012-11-14 A | 2012-11-30 A | 8250GT1940 | 100% | 2012-11-30 | 2012-12-31 | Survey team (crew of 4) [1375 h]; Drilling Team (crew of 4) [1375 h]; General Labor (Crew of 4) [1375 h]; Ground Treatment team (crew of 5) [1718.75 h]; Muck Car [343.75 h]; Locomotive [343.75 h]; Grouting Machine [330 h] | CONS | 2595 | CP14 |
| 8250GT1980 |  | Test | 6d | 2012-11-30 A | 2012-12-16 A | 8250GT1960 | 100% | 2012-12-31 | 2013-01-07 | Survey team (crew of 4) [330 h]; Drilling Team (crew of 4) [330 h]; General Labor (Crew of 4) [330 h]; Ground Treatment team (crew of 5) [412.5 h] | CONS | 2595 | CP14 |
|  | 8 | **CP 15** |  | 2013-07-19 | 2013-08-12 |  |  |  |  |  |  |  |  |
| 8250GT1480 |  | Set Up (within Tunnel) | 8d | 2013-07-19 A | 2013-07-25 A | 8250SB1540 FS-60d, 8250SB1500 FS+40d | 100% | 2013-07-02 | 2013-07-10 | General tunnel worker (Shift 1 - crew of 10) [1000 h]; General tunnel worker (Shift 2 - crew of 10) [1000 h]; Tunnel Carpenter (crew of 4) [400 h]; Scaffolders in Tunnel (crew of 6) [600 h]; Tunnel Concrete Workers (Crew of 4) [400 h]; Tunnel Steel & Rebar Workers (crew of 4) [400 h] | CONS | 2595 | CP151 |
| 8250GT1500 |  | Drill | 30d | 2013-07-26 A | 2013-08-03 A | 8250GT1480 | 100% | 2013-07-08 | 2013-08-12 | General Labor (Crew of 4) [1500 h]; Ground Treatment team (crew of 5) [1875 h]; Scaffolders in Tunnel (crew of 6) [1875 h]; Drilling Team (crew of 4) [1500 h] | CONS | 2595 | CP151 |
| 8250GT1520 |  | Chemical | 23d | 2013-08-05 A | 2013-08-12 A | 8250GT1500 | 100% | 2013-08-02 | 2013-08-29 | Tunnel Concrete Workers (Crew of 4) [1150 h]; General tunnel worker (Shift 1 - crew of 10) [2875 h] | CONS | 2595 | CP151 |
| 8250GT1540 |  | Test | 8d | 2013-08-05 A | 2013-08-12 A | 8250GT1520 | 100% | 2013-08-22 | 2013-08-31 | General Labor (Crew of 4) [400 h]; Ground Treatment team (crew of 5) [500 h]; Tunnel Concrete Workers (Crew of 4) [400 h]; General tunnel worker (Shift 1 - crew of 10) [1000 h] | CONS | 2595 | CP151 |

| ID | WBS | Activity | Duration | Start | Finish | Predecessors | Complete | Planned start | Planned finish | Calendar | Resources | 825 Phase | 825 Location | 825 Sub-location |
| --- | --- | --- | --- | --- | --- | --- | --- | --- | --- | --- | --- | --- | --- | --- |
|  | 6 | **CROSS PASSAGES** |  | 2013-06-20 | 2015-08-27 |  |  |  |  |  |  |  |  |  |
|  | 1 | **CP 7** |  | 2013-06-20 | 2015-08-17 |  |  |  |  |  |  |  |  |  |
|  | 1 | **NB** |  | 2014-12-19 | 2015-08-17 |  |  |  |  |  |  |  |  |  |
| 8250CC10880 |  | NB(CP7) - Sleeper Relocation and Support | 24d | 2014-12-19 A | 2014-12-31 A | 8250CC10080 | 100% | 2014-12-31 | 2015-01-28 |  | NB CP Labor [10800 h] |  |  |  |
| 8250CC10890 |  | NB(CP7) - Ring Support and Bottom Decking(Assembly, Welding Steel Plate & Grouting) | 22d | 2015-01-02 A | 2015-04-02 A | 8250CC10880 | 100% | 2015-01-29 | 2015-02-26 |  | NB CP Labor [9900 h] |  |  |  |
| 8250CC10900 |  | NB(CP7) - Saw Cutting | 2d | 2015-04-14 A | 2015-04-18 A | 8250CC10890 | 100% | 2015-04-30 | 2015-05-02 |  | NB CP Labor [900 h] |  |  |  |
| 8250CC10910 |  | NB(CP7) - Excavation(Breaking Segment, Excavation Portal Bottom & Top) | 14d | 2015-04-20 A | 2015-05-02 A | 8250CC11010, 8250CC10900 | 100% | 2015-04-30 | 2015-05-16 |  | NB CP Labor [6300 h] |  |  |  |
| 8250CC10920 |  | NB(CP7) - Waterproofing | 4d | 2015-05-04 A | 2015-05-09 A | 8250CC10910 | 100% | 2015-06-01 | 2015-06-04 |  | NB CP Labor [1800 h] |  |  |  |
| 8250CC10930 |  | NB(CP7) - Portal Frame | 2d | 2015-05-11 A | 2015-05-28 A | 8250CC10920 | 100% | 2015-06-05 | 2015-06-06 | 825_7-day w/o holidays | NB CP Labor [900 h] |  |  |  |
| 8250CC10940 |  | NB(CP7) - Portal Bottom(Rebar, Formworks, Waterstop, Concreting & Dismantling) | 10d | 2015-05-30 A | 2015-06-08 A | 8250CC10930 | 100% | 2015-06-30 | 2015-07-09 | 825_7-day w/o holidays | NB CP Portal Concrete [20 m3]; NB CP Labor [4500 h]; NB CP Formworks [4500 h]; NB CP Concreting [4500 h]; NB CP Rebar [4500 h] |  |  |  |
| 8250CC10950 |  | NB(CP7) - Portal Top(Rebar, Falsework, Formworks, Concreting & Curing) | 12d | 2015-06-09 A | 2015-06-19 A | 8250CC10940 | 100% | 2015-06-30 | 2015-07-14 |  | NB CP Portal Concrete [16 m3]; NB CP Labor [5400 h]; NB CP Formworks [5400 h]; NB CP Concreting [5400 h]; NB CP Rebar [5400 h] |  |  |  |
| 8250CC10970 |  | NB(CP7) - Permanent Lining(Rebar, Falsework, Formwork, Waterstop, Arc FW & Concreting) | 12d | 2015-07-17 A | 2015-07-25 A | 8250CC10950 | 100% | 2015-07-31 | 2015-08-13 |  | NB CP Formworks Set [120 Nos]; NB CP's Tunnel Lining [16 m3]; NB CP Labor [5400 h]; NB CP Formworks [5400 h]; NB CP Concreting [5400 h]; NB CP Rebar [5400 h] |  |  |  |
| 8250CC10960 |  | NB(CP7) - Dismantling of Temporary Steel Support & Misc. Works | 6d | 2015-07-30 A | 2015-08-06 A | 8250CC10970 SS | 100% | 2015-08-31 | 2015-09-05 |  | NB CP Labor [2700 h] |  |  |  |
| 8250CC10980 |  | NB(CP7) - Cleaning Invert | 4d | 2015-08-10 A | 2015-08-17 A | 8250CC10960 | 100% | 2015-08-31 | 2015-09-03 |  | NB CP Labor [1800 h] |  |  |  |
|  | 1 | **CP7 - Excavate & Erect Support Structure from NB** |  |  |  |  |  |  |  |  |  |  |  |  |
|  | 2 | **CP7 - Permanent Concrete Works from NB (Opening/Entrance & CP Lining)** |  |  |  |  |  |  |  |  |  |  |  |  |
|  | 4 | **(New WBS)** |  |  |  |  |  |  |  |  |  |  |  |  |
|  | 2 | **SB** |  | 2013-06-20 | 2014-05-24 |  |  |  |  |  |  |  |  |  |
| 8250CP1020 |  | CP7 - Excavate & Erect Support Structure from SB | 30.6d | 2013-06-20 A | 2014-03-05 A | 8250CC09980 FS-5.83d | 100% | 2013-10-09 | 2013-11-14 |  | General tunnel worker (Shift 1 - crew of 10) [3060 h]; General tunnel worker (Shift 2 - crew of 10) [3060 h]; General Steel Worker (crew of 4) [1224 h]; Tunnel Carpenter (crew of 4) [1224 h]; Scaffolders in Tunnel (crew of 6) [1836 h]; Tunnel Concrete Workers (Crew of 4) [1224 h]; Tunnel Steel & Rebar Workers (crew of 4) [1224 h]; General Labor (Crew of 4) [1224 h]; Drilling Rig [306 h]; Muck Car [306 h]; Gantry Crane [306 h]; Dump Truck [306 h]; Crawler Crane [306 h]; Locomotive [306 h] | CONS | 2575 | CP07 |
| 8250CP1030 |  | CP7 - Permanent Concrete Works from SB (Opening/Entrance) | 36d | 2014-03-07 A | 2014-05-24 A | 8250CP1020 | 100% | 2013-11-15 | 2013-12-28 |  | Grouting Machine [360 h]; Concrete Pump [360 h]; General tunnel worker (Shift 1 - crew of 10) [4500 h]; General Steel Worker (crew of 4) [1800 h]; Tunnel Carpenter (crew of 4) [1800 h]; Scaffolders in Tunnel (crew of 6) [2700 h]; Tunnel Concrete Workers (Crew of 4) [1800 h]; Tunnel Steel & Rebar Workers (crew of 4) [1800 h]; General Labor (Crew of 4) [1800 h]; Crawler Crane [360 h] | CONS | 2575 | CP07 |
|  | 2 | **CP 8** |  | 2014-06-24 | 2015-08-08 |  |  |  |  |  |  |  |  |  |
|  | 1 | **NB** |  | 2014-09-15 | 2015-08-08 |  |  |  |  |  |  |  |  |  |
| 8250CP1055 |  | NB(CP8) - Pipe Roofing Works | 30d | 2014-10-06 A | 2014-10-17 A | 8250CC10035 FS+5.83d, 8250NB1260 FS+14d, 8250CP1090 | 100% | 2015-01-17 | 2015-02-24 |  |  |  |  |  |
| 8250CC10990 |  | NB(CP8) - Additional Ring Support | 18d | 2015-01-10 A | 2015-02-05 A | 8250CC10880 | 100% | 2015-01-15 | 2015-02-04 |  | NB CP Labor [8100 h] |  |  |  |
| 8250CC11000 |  | NB(CP8) - Saw Cutting | 3d | 2015-02-05 A | 2015-02-09 A | 8250CC10990 | 100% | 2015-02-05 | 2015-02-07 |  | NB CP Labor [1350 h] |  |  |  |
| 8250CC11010 |  | NB(CP8) - Excavation(Breaking Segment, Excavation Portal Bottom & Top) | 20d | 2015-02-11 A | 2015-03-10 A | 8250CC11000 | 100% | 2015-02-28 | 2015-03-23 |  | NB CP Labor [9000 h] |  |  |  |
| 8250CC11030 |  | NB(CP8) - Waterproofing | 17d | 2015-03-11 A | 2015-03-20 A | 8250CC11010 | 100% | 2015-04-28 | 2015-05-18 |  | NB CP Labor [7650 h] |  |  |  |
| 8250CC11020 |  | NB(CP8) - Portal Frame | 3d | 2015-03-21 A | 2015-03-24 A | 8250CC11030 | 100% | 2015-05-19 | 2015-05-21 |  | NB CP Labor [1350 h] |  |  |  |
| 8250CC11620 |  | NB(CP8) - Portal Bottom(Rebar, Formworks, Waterstop, Concreting & Dismantling) | 8d | 2015-03-25 A | 2015-04-02 A | 8250CC11020 | 100% | 2015-04-08 | 2015-04-16 |  | NB CP Portal Concrete [20 m3]; NB CP Labor [3600 h]; NB CP Formworks [3600 h]; NB CP Concreting [3600 h]; NB CP Rebar [3600 h] |  |  |  |
| 8250CC11630 |  | NB(CP8) - Portal Top(Rebar, Falsework, Formworks, Concreting & Curing) | 12d | 2015-06-04 A | 2015-06-14 A | 8250CC11620 | 100% | 2015-06-30 | 2015-07-14 |  | NB CP Portal Concrete [20 m3]; NB CP Labor [5400 h]; NB CP Formworks [5400 h]; NB CP Concreting [5400 h]; NB CP Rebar [5400 h] |  |  |  |
| 8250CC11640 |  | NB(CP8) - Permanent Lining(Rebar, Falsework, Formwork, Waterstop, Arc FW & Concreting) | 12d | 2015-07-01 A | 2015-07-13 A | 8250CC11630, 8250CC11370 | 100% | 2015-07-31 | 2015-08-13 |  | NB CP Formworks Set [120 Nos]; NB CP's Tunnel Lining [16 m3]; NB CP Labor [5400 h]; NB CP Formworks [5400 h]; NB CP Concreting [5400 h]; NB CP Rebar [5400 h] |  |  |  |
| 8250CC11650 |  | NB(CP8) - Dismantling Ring Support | 4d | 2015-07-14 A | 2015-07-25 A | 8250CC11640 | 100% | 2015-08-14 | 2015-08-18 |  | NB CP Labor [1800 h] |  |  |  |
| 8250CC11660 |  | NB(CP8) - Cleaning Invert | 4d | 2015-07-31 A | 2015-08-08 A | 8250CC11650, 8250CC11640 | 100% | 2015-08-31 | 2015-09-03 |  | NB CP Labor [1800 h] |  |  |  |

| ID | WBS | Activity | Duration | Start | Finish | Predecessors | Complete | Planned start | Planned finish | Resources | 825 Phase | 825 Location | 825 Sub-location |
| --- | --- | --- | --- | --- | --- | --- | --- | --- | --- | --- | --- | --- | --- |
|  | 1 | **CP8 - Excavate & Erect Support Structure from NB** |  | 2014-09-15 | 2014-09-25 |  |  |  |  |  |  |  |  |
| 8250CP5105 |  | CP8- Installation of Temporarty Steel Support | 6d | 2014-09-15 A | 2014-09-25 A | 8250CP1055 | 100% | 2014-12-31 | 2015-01-07 |  |  |  |  |
|  | 2 | **CP8 - Permanent Concrete Works from NB (Opening/Entrance & CP Lining)** |  |  |  |  |  |  |  |  |  |  |  |
|  | 2 | **SB** |  | 2014-06-24 | 2014-08-27 |  |  |  |  |  |  |  |  |
| 8250CP1080 |  | CP8 - Excavate & Erect Support Structure from SB | 20d | 2014-06-24 A | 2014-07-05 A | 8250CP1020, 8250CC10000 | 100% | 2013-11-25 | 2013-12-17 | General Labor (Crew of 4) [800 h]; Drilling Rig [200 h]; Muck Car [200 h]; Gantry Crane [200 h]; Dump Truck [200 h]; Crawler Crane [200 h]; Locomotive [200 h]; General tunnel worker (Shift 1 - crew of 10) [2000 h]; General tunnel worker (Shift 2 - crew of 10) [2000 h]; General Steel Worker (crew of 4) [800 h]; Tunnel Carpenter (crew of 4) [800 h]; Scaffolders in Tunnel (crew of 6) [1200 h]; Tunnel Concrete Workers (Crew of 4) [800 h]; Tunnel Steel & Rebar Workers (crew of 4) [800 h] | CONS | 2575 | CP08 |
| 8250CP1090 |  | CP8 - Permanent Concrete Works for SB (Opening/Entrance) | 20d | 2014-07-07 A | 2014-08-27 A | 8250CP1080 | 100% | 2013-12-18 | 2014-01-13 | Concrete Pump [200 h]; Grouting Machine [200 h]; Crawler Crane [200 h]; General tunnel worker (Shift 1 - crew of 10) [2500 h]; General Steel Worker (crew of 4) [1000 h]; Scaffolders in Tunnel (crew of 6) [1500 h]; Tunnel Concrete Workers (Crew of 4) [1000 h]; Tunnel Steel & Rebar Workers (crew of 4) [1000 h]; General Labor (Crew of 4) [1000 h]; Tunnel Carpenter (crew of 4) [1000 h] | CONS | 2575 | CP08 |
|  | 3 | **CP 9** |  | 2013-08-22 | 2015-03-21 |  |  |  |  |  |  |  |  |
|  | 1 | **NB** |  | 2014-09-22 | 2015-03-21 |  |  |  |  |  |  |  |  |
| 8250CC11040 |  | NB(CP9) - Portal Bottom(Rebar, Formworks, Waterstop, Concreting & Dismantling) | 12d | 2015-01-02 A | 2015-01-17 A | 8250NBDIS0065, 8250CP5215 | 100% | 2014-12-31 | 2015-01-14 | NB CP Portal Concrete [20 m3]; NB CP Labor [5400 h]; NB CP Formworks [5400 h]; NB CP Concreting [5400 h]; NB CP Rebar [5400 h] |  |  |  |
| 8250CC11400 |  | NB(CP9) - Portal Top(Rebar, Falsework, Formworks, Concreting & Curing) | 21d | 2015-01-19 A | 2015-02-05 A | 8250CC11040 | 100% | 2015-01-15 | 2015-02-07 | NB CP Portal Concrete [20 m3]; NB CP Labor [9450 h]; NB CP Formworks [9450 h]; NB CP Concreting [9450 h]; NB CP Rebar [9450 h] |  |  |  |
| 8250CC11670 |  | NB(CP9) - Permanent Lining(Rebar, Falsework, Formwork, Waterstop, Arc FW & Concreting) | 21d | 2015-02-02 A | 2015-02-25 A | 8250CC11400 | 100% | 2015-02-09 | 2015-03-07 | NB CP Formworks Set [210 Nos]; NB CP's Tunnel Lining [20 m3]; NB CP Labor [9450 h]; NB CP Formworks [9450 h]; NB CP Concreting [9450 h]; NB CP Rebar [9450 h] |  |  |  |
| 8250CC11680 |  | NB(CP9) - Dismantle Ring Support | 13d | 2015-02-26 A | 2015-03-14 A | 8250CC11670 SS | 100% | 2015-03-31 | 2015-04-18 | NB CP Labor [5850 h] |  |  |  |
| 8250CC11690 |  | NB(CP9) - Cleaning Invert | 5d | 2015-03-16 A | 2015-03-21 A | 8250CC11680, 8250CC11670 FS+7d | 100% | 2015-04-20 | 2015-04-24 | NB CP Labor [2250 h] |  |  |  |
|  | 1 | **CP9 - Excavate & Erect Support Structure from NB** |  | 2014-09-22 | 2014-12-13 |  |  |  |  |  |  |  |  |
| 8250CP5205 |  | CP9- Installation of Temporarty Steel Support | 6d | 2014-09-22 A | 2014-10-17 A | 8250CP5105 SS | 100% | 2014-12-31 | 2015-01-07 |  |  |  |  |
| 8250CP5210 |  | CP9 - Saw Cutting & Excavation | 6d | 2014-10-20 A | 2014-11-03 A | 8250CP5205 | 100% | 2015-01-08 | 2015-01-14 |  |  |  |  |
| 8250CP5215 |  | CP9 - Shotcreting & Waterproofing | 2d | 2014-12-01 A | 2014-12-13 A | 8250CP5210 | 100% | 2014-12-31 | 2015-01-02 |  |  |  |  |
|  | 2 | **CP9 - Permanent Concrete Works from NB (Opening/Entrance & CP Lining)** |  |  |  |  |  |  |  |  |  |  |  |
|  | 2 | **SB** |  | 2013-08-22 | 2014-07-02 |  |  |  |  |  |  |  |  |
| 8250CP1140 |  | CP9 - Excavate & Erect Support Structure from SB | 30d | 2013-08-22 A | 2014-04-12 A | 8250CC09980 | 100% | 2013-10-15 | 2013-11-18 | General tunnel worker (Shift 1 - crew of 10) [3000 h]; General tunnel worker (Shift 2 - crew of 10) [3000 h]; General Steel Worker (crew of 4) [1200 h]; Tunnel Carpenter (crew of 4) [1200 h]; Scaffolders in Tunnel (crew of 6) [1800 h]; Tunnel Concrete Workers (Crew of 4) [1200 h]; Tunnel Steel & Rebar Workers (crew of 4) [1200 h]; General Labor (Crew of 4) [1200 h]; Drilling Rig [300 h]; Muck Car [300 h]; Gantry Crane [300 h]; Dump Truck [300 h]; Crawler Crane [300 h]; Locomotive [300 h] | CONS | 2575 | CP09 |
| 8250CP1150 |  | CP9 - Permanent Concrete Works for SB (Opening/Entrance) | 36d | 2014-04-22 A | 2014-07-02 A | 8250CP1140 | 100% | 2013-11-19 | 2014-01-02 | Concrete Pump [360 h]; Grouting Machine [360 h]; Crawler Crane [360 h]; General tunnel worker (Shift 1 - crew of 10) [4500 h]; General Steel Worker (crew of 4) [1800 h]; Tunnel Carpenter (crew of 4) [1800 h]; Scaffolders in Tunnel (crew of 6) [2700 h]; Tunnel Concrete Workers (Crew of 4) [1800 h]; Tunnel Steel & Rebar Workers (crew of 4) [1800 h]; General Labor (Crew of 4) [1800 h] | CONS | 2575 | CP09 |
|  | 4 | **CP 10** |  | 2013-07-02 | 2015-07-23 |  |  |  |  |  |  |  |  |
|  | 1 | **NB** |  | 2014-12-30 | 2015-07-23 |  |  |  |  |  |  |  |  |
| 8250CC11050 |  | NB(CP10) - Ring Support and Bottom Decking(Assembly, Welding Steel Plate & Grouting) | 22d | 2014-12-30 A | 2015-01-10 A | 8250CC10080 | 100% | 2014-12-31 | 2015-01-26 | NB CP Labor [9900 h] |  |  |  |
| 8250CC11060 |  | NB(CP10) - Saw Cutting | 2d | 2015-01-17 A | 2015-01-23 A | 8250CC11050 | 100% | 2015-01-27 | 2015-01-28 | NB CP Labor [900 h] |  |  |  |
| 8250CC11070 |  | NB(CP10) - Excavation(Breaking Segment, Excavation Portal Bottom & Top) | 29d | 2015-03-18 A | 2015-03-24 A | 8250CC11130, 8250CC11260 | 100% | 2015-04-21 | 2015-05-26 | NB CP Labor [13050 h] |  |  |  |
| 8250CC11080 |  | NB(CP10) - Waterproofing Membrane | 4d | 2015-03-25 A | 2015-03-31 A | 8250CC11070 | 100% | 2015-05-09 | 2015-05-13 | NB CP Labor [1800 h] |  |  |  |
| 8250CC11090 |  | NB(CP10) - Portal Frame | 2d | 2015-04-03 A | 2015-04-11 A | 8250CC11080 | 100% | 2015-05-14 | 2015-05-15 | NB CP Labor [900 h] |  |  |  |
| 8250CC11100 |  | NB(CP10) - Portal Bottom(Rebar, Formworks, Waterstop, Concreting & Dismantling) | 5d | 2015-04-21 A | 2015-05-04 A | 8250CC11090 | 100% | 2015-04-30 | 2015-05-06 | NB CP Portal Concrete [20 m3]; NB CP Labor [2250 h]; NB CP Formworks [2250 h]; NB CP Concreting [2250 h]; NB CP Rebar [2250 h] |  |  |  |
| 8250CC11120 |  | NB(CP10) - Portal Top(Rebar, Falsework, Formworks, Concreting & Curing) | 15d | 2015-05-05 A | 2015-06-04 A | 8250CC11100 | 100% | 2015-06-01 | 2015-06-17 | NB CP Portal Concrete [20 m3]; NB CP Labor [6750 h]; NB CP Formworks [6750 h]; NB CP Concreting [6750 h]; NB CP Rebar [6750 h] |  |  |  |
| 8250CC11110 |  | NB(CP10) - Permanent Lining(Rebar, Falsework, Formwork, Waterstop, Arc FW & Concreting) | 15d | 2015-06-23 A | 2015-07-08 A | 8250CC11120, 8250CC11370 | 100% | 2015-06-30 | 2015-07-17 | NB CP Formworks Set [120 Nos]; NB CP's Tunnel Lining [20 m3]; NB CP Labor [6750 h]; NB CP Formworks [6750 h]; NB CP Concreting [6750 h]; NB CP Rebar [6750 h] |  |  |  |
| 8250CC11700 |  | NB(CP10) - Dismantle Ring Support | 8d | 2015-07-13 A | 2015-07-18 A | 8250CC11110 SS | 100% | 2015-07-31 | 2015-08-08 | NB CP Labor [3600 h] |  |  |  |
| 8250CC11710 |  | NB(CP10) - Cleaning Invert | 4d | 2015-07-14 A | 2015-07-23 A | 8250CC11700, 8250CC11110 | 100% | 2015-08-18 | 2015-08-21 | NB CP Labor [1800 h] |  |  |  |

| ID | WBS | Activity | Duration | Start | Finish | Predecessors | Complete | Planned start | Planned finish | Resources | 825 Phase | 825 Location | 825 Sub-location |
| --- | --- | --- | --- | --- | --- | --- | --- | --- | --- | --- | --- | --- | --- |
|  | 1 | **CP10 - Excavate & Erect Support Structure from NB** |  |  |  |  |  |  |  |  |  |  |  |
|  | 2 | **CP10 - Permanent Concrete Works from NB (Opening/Entrance & CP Lining)** |  |  |  |  |  |  |  |  |  |  |  |
|  | 2 | **SB** |  | 2013-07-02 | 2014-06-21 |  |  |  |  |  |  |  |  |
| 8250CP1200 |  | CP10 - Excavate & Erect Support Structure from SB | 14.81d | 2013-07-02 A | 2014-03-13 A | 8250CC10030 FS-2.92d | 100% | 2014-01-15 | 2014-01-31 | General tunnel worker (Shift 1 - crew of 10) [1480.83 h]; General tunnel worker (Shift 2 - crew of 10) [1480.83 h]; General Steel Worker (crew of 4) [592.33 h]; Tunnel Carpenter (crew of 4) [592.33 h]; Scaffolders in Tunnel (crew of 6) [888.5 h]; Tunnel Concrete Workers (Crew of 4) [592.33 h]; Tunnel Steel & Rebar Workers (crew of 4) [592.33 h]; General Labor (Crew of 4) [592.33 h]; Drilling Rig [148.08 h]; Muck Car [148.08 h]; Gantry Crane [148.08 h]; Dump Truck [148.08 h]; Crawler Crane [148.08 h]; Locomotive [148.08 h] | CONS | 2575 | CP10 |
| 8250CP1210 |  | CP10 - Permanent Concrete Works for SB (Opening/Entrance) | 14d | 2014-04-01 A | 2014-06-21 A | 8250CP1200 | 100% | 2014-02-04 | 2014-02-19 | Concrete Pump [140 h]; Grouting Machine [140 h]; Crawler Crane [140 h]; General tunnel worker (Shift 1 - crew of 10) [1750 h]; General Steel Worker (crew of 4) [700 h]; Tunnel Carpenter (crew of 4) [700 h]; Scaffolders in Tunnel (crew of 6) [1050 h]; Tunnel Concrete Workers (Crew of 4) [700 h]; Tunnel Steel & Rebar Workers (crew of 4) [700 h]; General Labor (Crew of 4) [700 h] | CONS | 2575 | CP10 |
|  | 5 | **CP 11** |  | 2013-07-15 | 2015-08-14 |  |  |  |  |  |  |  |  |
|  | 1 | **NB** |  | 2014-11-18 | 2015-08-14 |  |  |  |  |  |  |  |  |
| 8250CC11130 |  | NB(CP11) - Excavation(Breaking Segment, Excavation Portal Bottom & Top) | 14d | 2015-03-04 A | 2015-03-19 A | 8250CC11060 SS, 8250CC11180, 8250CP5410 | 100% | 2015-03-31 | 2015-04-20 | NB CP Labor [6300 h] |  |  |  |
| 8250CC11140 |  | NB(CP11) - Waterproofing Membrane | 9d | 2015-04-24 A | 2015-04-29 A | 8250CC11130 | 100% | 2015-04-30 | 2015-05-11 | NB CP Labor [4050 h] |  |  |  |
| 8250CC11150 |  | NB(CP11) - Portal Frame | 2d | 2015-04-30 A | 2015-05-02 A | 8250CC11140 | 100% | 2015-05-12 | 2015-05-13 | NB CP Labor [900 h] |  |  |  |
| 8250CC11170 |  | NB(CP11) - Portal Bottom(Rebar, Formworks, Waterstop, Concreting & Dismantling) | 14d | 2015-05-08 A | 2015-05-21 A | 8250CC11150 | 100% | 2015-06-01 | 2015-06-16 | NB CP Portal Concrete [14.74 m3]; NB CP Labor [6300 h]; NB CP Formworks [6300 h]; NB CP Concreting [6300 h]; NB CP Rebar [6300 h] |  |  |  |
| 8250CC11160 |  | NB(CP11) - Portal Top(Rebar, Falsework, Formworks, Concreting & Curing) | 12d | 2015-05-23 A | 2015-06-11 A | 8250CC11170 | 100% | 2015-06-17 | 2015-07-02 | NB CP Portal Concrete [20 m3]; NB CP Labor [5400 h]; NB CP Formworks [5400 h]; NB CP Concreting [5400 h]; NB CP Rebar [5400 h] |  |  |  |
| 8250CC11720 |  | NB(CP11) - Permanent Lining(Rebar, Falsework, Formwork, Waterstop, Arc FW & Concreting) | 12d | 2015-06-01 A | 2015-08-05 A | 8250CC11160 | 100% | 2015-08-31 | 2015-09-12 | NB CP Formworks Set [72 Nos]; NB CP's Tunnel Lining [16 m3]; NB CP Labor [5400 h]; NB CP Formworks [5400 h]; NB CP Concreting [5400 h]; NB CP Rebar [5400 h] |  |  |  |
| 8250CC11740 |  | NB(CP11) - Cleaning Invert | 4d | 2015-06-26 A | 2015-07-09 A | 8250CC11720, 8250CC11730 | 100% | 2015-09-14 | 2015-09-17 | NB CP Labor [1800 h] |  |  |  |
| 8250CC11730 |  | NB(CP11) - Dismantle Ring Support | 6d | 2015-08-10 A | 2015-08-14 A | 8250CC11720 SS | 100% | 2015-08-31 | 2015-09-05 | NB CP Labor [2700 h] |  |  |  |
|  | 1 | **CP11 - Excavate & Erect Support Structure from NB** |  | 2014-11-18 | 2014-12-24 |  |  |  |  |  |  |  |  |
| 8250CP5405 |  | CP11- Installation of Temporarty Steel Support | 6d | 2014-11-18 A | 2014-12-02 A | 8250CP5205 | 100% | 2014-12-31 | 2015-01-07 |  |  |  |  |
| 8250CP5410 |  | CP11 - Saw Cutting & Excavation | 6d | 2014-12-05 A | 2014-12-24 A | 8250CP5405 | 100% | 2015-01-08 | 2015-01-14 |  |  |  |  |
|  | 2 | **CP11 - Permanent Concrete Works from NB (Opening/Entrance & CP Lining)** |  |  |  |  |  |  |  |  |  |  |  |
|  | 2 | **SB** |  | 2013-07-15 | 2014-08-11 |  |  |  |  |  |  |  |  |
| 8250CP1260 |  | CP11 - Excavate & Erect Support Structure from SB | 14.81d | 2013-07-15 A | 2014-06-03 A | 8250GT1780 FS+5.6d, 8250CP1200 SS | 100% | 2014-01-15 | 2014-01-31 | General tunnel worker (Shift 1 - crew of 10) [1480.83 h]; General tunnel worker (Shift 2 - crew of 10) [1480.83 h]; General Steel Worker (crew of 4) [592.33 h]; Tunnel Carpenter (crew of 4) [592.33 h]; Scaffolders in Tunnel (crew of 6) [888.5 h]; Tunnel Concrete Workers (Crew of 4) [592.33 h]; Tunnel Steel & Rebar Workers (crew of 4) [592.33 h]; General Labor (Crew of 4) [592.33 h]; Drilling Rig [148.08 h]; Muck Car [148.08 h]; Gantry Crane [148.08 h]; Dump Truck [148.08 h]; Crawler Crane [148.08 h]; Locomotive [148.08 h] | CONS | 2575 | CP11 |
| 8250CP1270 |  | CP11 - Permanent Concrete Works for SB (Opening/Entrance) | 20d | 2014-06-07 A | 2014-08-11 A | 8250CP1260 | 100% | 2014-02-04 | 2014-02-26 | Concrete Pump [200 h]; Grouting Machine [200 h]; Crawler Crane [200 h]; General tunnel worker (Shift 1 - crew of 10) [2500 h]; General Steel Worker (crew of 4) [1000 h]; Tunnel Carpenter (crew of 4) [1000 h]; Scaffolders in Tunnel (crew of 6) [1500 h]; Tunnel Concrete Workers (Crew of 4) [1000 h]; Tunnel Steel & Rebar Workers (crew of 4) [1000 h]; General Labor (Crew of 4) [1000 h] | CONS | 2575 | CP11 |
|  | 6 | **CP 12** |  | 2013-07-18 | 2015-08-27 |  |  |  |  |  |  |  |  |
|  | 1 | **NB** |  | 2014-10-30 | 2015-08-27 |  |  |  |  |  |  |  |  |
| 8250CC11180 |  | NB(CP12) - Excavation(Breaking Segment, Excavation Portal Bottom & Top) | 23d | 2015-01-09 A | 2015-01-27 A | 8250CC10080, 8250CP5505 | 100% | 2014-12-31 | 2015-01-27 | NB CP Labor [10350 h] |  |  |  |
| 8250CC11410 |  | NB(CP12) - Waterproofing Membrane | 4d | 2015-02-05 A | 2015-02-09 A | 8250CC11180 | 100% | 2015-01-28 | 2015-01-31 | NB CP Labor [1800 h] |  |  |  |
| 8250CC11750 |  | NB(CP12) - Portal Frame | 2d | 2015-02-05 A | 2015-02-09 A | 8250CC11410 | 100% | 2015-02-02 | 2015-02-03 | NB CP Labor [900 h] |  |  |  |
| 8250CC11760 |  | NB(CP12) - Portal Bottom(Rebar, Formworks, Waterstop, Concreting & Dismantling) | 8d | 2015-02-25 A | 2015-03-04 A | 8250CC11750 | 100% | 2015-02-28 | 2015-03-09 | NB CP Portal Concrete [20 m3]; NB CP Labor [3600 h]; NB CP Formworks [3600 h]; NB CP Concreting [3600 h]; NB CP Rebar [3600 h] |  |  |  |
| 8250CC11770 |  | NB(CP12) - Portal Top(Rebar, Falsework, Formworks, Concreting & Curing) | 32d | 2015-04-03 A | 2015-05-21 A | 8250CC11760 | 100% | 2015-04-30 | 2015-06-08 | NB CP Portal Concrete [20 m3]; NB CP Labor [14400 h]; NB CP Formworks [14400 h]; NB CP Concreting [14400 h]; NB CP Rebar [14400 h] |  |  |  |
| 8250CC11780 |  | NB(CP12) - Permanent Lining(Rebar, Falsework, Formwork, Waterstop, Arc FW & Concreting) | 11d | 2015-07-31 A | 2015-08-14 A | 8250CC11670, 8250CC11770 | 100% | 2015-08-31 | 2015-09-11 | NB CP Formworks Set [55 Nos]; NB CP's Tunnel Lining [20 m3]; NB CP Labor [4950 h]; NB CP Formworks [4950 h]; NB CP Concreting [4950 h]; NB CP Rebar [4950 h] |  |  |  |
| 8250CC11790 |  | NB(CP12) - Dismantle Ring Support | 6d | 2015-08-17 A | 2015-08-21 A | 8250CC11780 SS | 100% | 2015-08-31 | 2015-09-05 | NB CP Labor [2700 h] |  |  |  |
| 8250CC11800 |  | NB(CP12) - Cleaning Invert | 4d | 2015-08-24 A | 2015-08-27 A | 8250CC11790 | 100% | 2015-09-07 | 2015-09-10 | NB CP Labor [1800 h] |  |  |  |

| ID | WBS | Activity | Duration | Start | Finish | Predecessors | Complete | Planned start | Planned finish | Resources | 825 Phase | 825 Location | 825 Sub-location |
| --- | --- | --- | --- | --- | --- | --- | --- | --- | --- | --- | --- | --- | --- |
|  | 1 | **CP12 - Excavate & Erect Support Structure from NB** |  | 2014-10-30 | 2014-11-20 |  |  |  |  |  |  |  |  |
| 8250CP5505 |  | CP12- Installation of Temporarty Steel Support | 6d | 2014-10-30 A | 2014-11-20 A | 8250CP5205 | 100% | 2014-12-31 | 2015-01-07 |  |  |  |  |
|  | 2 | **CP12 - Permanent Concrete Works from NB (Opening/Entrance & CP Lining)** |  |  |  |  |  |  |  |  |  |  |  |
|  | 2 | **SB** |  | 2013-07-18 | 2014-08-30 |  |  |  |  |  |  |  |  |
| 8250CP1320 |  | CP12 - Excavate & Erect Support Structure from SB | 21d | 2013-07-18 A | 2014-04-22 A | 8250CP1200 | 100% | 2014-02-04 | 2014-02-27 | General tunnel worker (Shift 1 - crew of 10) [2100 h]; General tunnel worker (Shift 2 - crew of 10) [2100 h]; General Steel Worker (crew of 4) [840 h]; Tunnel Carpenter (crew of 4) [840 h]; Scaffolders in Tunnel (crew of 6) [1260 h]; Tunnel Concrete Workers (Crew of 4) [840 h]; Tunnel Steel & Rebar Workers (crew of 4) [840 h]; General Labor (Crew of 4) [840 h]; Drilling Rig [210 h]; Muck Car [210 h]; Gantry Crane [210 h]; Dump Truck [210 h]; Crawler Crane [210 h]; Locomotive [210 h] | CONS | 2575 | CP12 |
| 8250CP1330 |  | CP12 - Permanent Concrete Works from SB (Opening/Entrance) | 38d | 2014-04-23 A | 2014-08-30 A | 8250CP1320 | 100% | 2014-02-28 | 2014-04-14 | Concrete Pump [380 h]; Grouting Machine [380 h]; Crawler Crane [380 h]; General tunnel worker (Shift 1 - crew of 10) [3800 h]; General Steel Worker (crew of 4) [1520 h]; Tunnel Carpenter (crew of 4) [1520 h]; Scaffolders in Tunnel (crew of 6) [2280 h]; Tunnel Concrete Workers (Crew of 4) [1520 h]; Tunnel Steel & Rebar Workers (crew of 4) [1520 h]; General Labor (Crew of 4) [1520 h] | CONS | 2575 | CP12 |
|  | 7 | **CP 13** |  | 2013-06-20 | 2015-07-11 |  |  |  |  |  |  |  |  |
|  | 1 | **NB** |  | 2014-12-01 | 2015-07-11 |  |  |  |  |  |  |  |  |
| 8250CC11190 |  | NB(CP13) - Saw Cutting | 8d | 2015-01-06 A | 2015-01-08 A | 8250CC11310, 8250CP5605 | 100% | 2014-12-31 | 2015-01-09 | NB CP Labor [3600 h] |  |  |  |
| 8250CC11200 |  | NB(CP13) - Excavation(Breaking Segment, Excavation Portal Bottom & Top) | 28d | 2015-01-29 A | 2015-03-27 A | 8250CC11130, 8250CC11190 | 100% | 2015-02-13 | 2015-03-20 | NB CP Labor [12600 h] |  |  |  |
| 8250CC11210 |  | NB(CP13) - Waterproofing Membrane | 4d | 2015-03-28 A | 2015-04-03 A | 8250CC11200 | 100% | 2015-03-31 | 2015-04-08 | NB CP Labor [1800 h] |  |  |  |
| 8250CC11230 |  | NB(CP13) - Portal Frame | 2d | 2015-03-30 A | 2015-04-03 A | 8250CC11210 | 100% | 2015-04-09 | 2015-04-10 | NB CP Labor [900 h] |  |  |  |
| 8250CC11220 |  | NB(CP13) - Portal Bottom(Rebar, Formworks, Waterstop, Concreting & Dismantling) | 6d | 2015-04-15 A | 2015-04-22 A | 8250CC11230 | 100% | 2015-04-30 | 2015-05-07 | NB CP Portal Concrete [20 m3]; NB CP Labor [2700 h]; NB CP Formworks [2700 h]; NB CP Concreting [2700 h]; NB CP Rebar [2700 h] |  |  |  |
| 8250CC11840 |  | NB(CP13) - Portal Top(Rebar, Falsework, Formworks, Concreting & Curing) | 14d | 2015-04-25 A | 2015-05-17 A | 8250CC11220 | 100% | 2015-04-30 | 2015-05-16 | NB CP Portal Concrete [20 m3]; NB CP Labor [6300 h]; NB CP Formworks [6300 h]; NB CP Concreting [6300 h]; NB CP Rebar [6300 h] |  |  |  |
| 8250CC11850 |  | NB(CP13) - Permanent Lining(Rebar, Falsework, Formwork, Waterstop, Arc FW & Concreting) | 15d | 2015-06-12 A | 2015-06-25 A | 8250CC11840 | 100% | 2015-06-30 | 2015-07-17 | NB CP Formworks Set [105 Nos]; NB CP's Tunnel Lining [20 m3]; NB CP Labor [6750 h]; NB CP Formworks [6750 h]; NB CP Concreting [6750 h]; NB CP Rebar [6750 h] |  |  |  |
| 8250CC11860 |  | NB(CP13) - Dismantle Ring Support | 8d | 2015-07-01 A | 2015-07-06 A | 8250CC11850 SS | 100% | 2015-07-31 | 2015-08-08 | NB CP Labor [3600 h] |  |  |  |
| 8250CC11870 |  | NB(CP13) - Cleaning Invert | 4d | 2015-07-07 A | 2015-07-11 A | 8250CC11860, 8250CC11850 | 100% | 2015-08-10 | 2015-08-13 | NB CP Labor [1800 h] |  |  |  |
|  | 1 | **CP13 - Excavate & Erect Support Structure from NB** |  | 2014-12-01 | 2014-12-24 |  |  |  |  |  |  |  |  |
| 8250CP5605 |  | CP13- Installation of Temporarty Steel Support | 6d | 2014-12-01 A | 2014-12-24 A | 8250CP5505 | 100% | 2014-12-31 | 2015-01-07 |  |  |  |  |
|  | 2 | **CP13 - Permanent Concrete Works from NB (Opening/Entrance & CP Lining)** |  |  |  |  |  |  |  |  |  |  |  |
|  | 2 | **SB** |  | 2013-06-20 | 2014-07-22 |  |  |  |  |  |  |  |  |
| 8250CP1380 |  | CP13 - Excavate & Erect Support Structure from SB | 21d | 2013-06-20 A | 2014-04-03 A | 8250CP1320 SS, 8250GT1880 | 100% | 2014-02-04 | 2014-02-27 | Crawler Crane [210 h]; Locomotive [210 h]; General tunnel worker (Shift 1 - crew of 10) [2100 h]; General tunnel worker (Shift 2 - crew of 10) [2100 h]; General Steel Worker (crew of 4) [840 h]; Tunnel Carpenter (crew of 4) [840 h]; Scaffolders in Tunnel (crew of 6) [1260 h]; Tunnel Concrete Workers (Crew of 4) [840 h]; Tunnel Steel & Rebar Workers (crew of 4) [840 h]; General Labor (Crew of 4) [840 h]; Drilling Rig [210 h]; Muck Car [210 h]; Gantry Crane [210 h]; Dump Truck [210 h] | CONS | 2575 | CP13 |
| 8250CP1385 |  | CP13 - Permanent Concrete Works from SB (Opening/Entrance) | 38d | 2014-04-10 A | 2014-07-22 A | 8250CP1380 | 100% | 2014-02-28 | 2014-04-14 | Concrete Pump [380 h]; Grouting Machine [380 h]; Crawler Crane [380 h]; General tunnel worker (Shift 1 - crew of 10) [4750 h]; General Steel Worker (crew of 4) [1900 h]; Tunnel Carpenter (crew of 4) [1900 h]; Scaffolders in Tunnel (crew of 6) [2850 h]; Tunnel Concrete Workers (Crew of 4) [1900 h]; Tunnel Steel & Rebar Workers (crew of 4) [1900 h]; General Labor (Crew of 4) [1900 h] | CONS | 2575 | CP13 |
|  | 8 | **CP 14** |  | 2013-07-10 | 2015-05-22 |  |  |  |  |  |  |  |  |
|  | 1 | **NB** |  | 2014-12-01 | 2015-05-22 |  |  |  |  |  |  |  |  |
| 8250CC11240 |  | NB(CP14) - Ring Support and Bottom Decking(Assembly, Welding Steel Plate & Grouting) | 12d | 2014-12-01 A | 2015-01-06 A | 8250CC10080, 8250CP5705 | 100% | 2014-12-31 | 2015-01-14 | NB CP Labor [5400 h] |  |  |  |
| 8250CC11250 |  | NB(CP14) - Saw Cutting | 2d | 2015-01-09 A | 2015-01-16 A | 8250CC11240 | 100% | 2015-01-15 | 2015-01-16 | NB CP Labor [900 h] |  |  |  |
| 8250CC11260 |  | NB(CP14) - Excavation(Breaking Segment, Excavation Portal Bottom & Top) | 14d | 2015-01-27 A | 2015-03-05 A | 8250CC11320, 8250CC11250 FS+7d | 100% | 2015-01-27 | 2015-02-11 | NB CP Labor [6300 h] |  |  |  |
| 8250CC11270 |  | NB(CP14) - Waterproofing Membrane | 9d | 2015-03-07 A | 2015-03-14 A | 8250CC11260 | 100% | 2015-04-21 | 2015-04-30 | NB CP Labor [4050 h] |  |  |  |
| 8250CC11280 |  | NB(CP14) - Portal Frame | 2d | 2015-03-16 A | 2015-03-18 A | 8250CC11270 | 100% | 2015-05-02 | 2015-05-04 | NB CP Labor [900 h] |  |  |  |
| 8250CC11300 |  | NB(CP14) - Portal Bottom(Rebar, Formworks, Waterstop, Concreting & Dismantling) | 19d | 2015-03-20 A | 2015-03-31 A | 8250CC11280 | 100% | 2015-03-31 | 2015-04-25 | NB CP Concreting [8550 h]; NB CP Rebar [8550 h]; NB CP Portal Concrete [20 m3]; NB CP Labor [8550 h]; NB CP Formworks [8550 h] |  |  |  |
| 8250CC11290 |  | NB(CP14) - Portal Top(Rebar, Falsework, Formworks, Concreting & Curing) | 12d | 2015-03-31 A | 2015-04-21 A | 8250CC11300 | 100% | 2015-04-30 | 2015-05-14 | NB CP Portal Concrete [20 m3]; NB CP Labor [5400 h]; NB CP Formworks [5400 h]; NB CP Concreting [5400 h]; NB CP Rebar [5400 h] |  |  |  |
| 8250CC11810 |  | NB(CP14) - Permanent Lining(Rebar, Falsework, Formwork, Waterstop, Arc FW & Concreting) | 15d | 2015-04-23 A | 2015-05-02 A | 8250CC11290 | 100% | 2015-04-30 | 2015-05-18 | NB CP Formworks Set [105 Nos]; NB CP's Tunnel Lining [20 m3]; NB CP Labor [6750 h]; NB CP Formworks [6750 h]; NB CP Concreting [6750 h]; NB CP Rebar [6750 h] |  |  |  |
| 8250CC11820 |  | NB(CP14) - Dismantle Ring Support | 8d | 2015-05-06 A | 2015-05-14 A | 8250CC11810 SS | 100% | 2015-06-01 | 2015-06-09 | NB CP Labor [3600 h] |  |  |  |
| 8250CC11830 |  | NB(CP14) - Cleaning Invert | 5d | 2015-05-11 A | 2015-05-22 A | 8250CC11820, 8250CC11810 | 100% | 2015-06-10 | 2015-06-15 | NB CP Labor [2250 h] |  |  |  |

| ID | WBS | Activity | Type | Duration | Start | Finish | Predecessors | Complete | Planned start | Planned finish | Constraint | Calendar | Resources | 825 Phase | 825 Location | 825 Sub-location | Critical Path 4 | Updated Progress Status | Critical Path 1 and 2 | Critical Path 3 |
| --- | --- | --- | --- | --- | --- | --- | --- | --- | --- | --- | --- | --- | --- | --- | --- | --- | --- | --- | --- | --- |
|  | 1 | **CP14 - Excavate & Erect Support Structure from NB** |  |  | 2014-12-01 | 2014-12-13 |  |  |  |  |  |  |  |  |  |  |  |  |  |  |
| 8250CP5705 |  | CP14- Installation of Temporarty Steel Support |  | 6d | 2014-12-01 A | 2014-12-13 A | 8250CP5505 | 100% | 2014-12-31 | 2015-01-07 |  |  |  |  |  |  |  |  |  |  |
|  | 2 | **CP14 - Permanent Concrete Works from NB (Opening/Entrance & CP Lining)** |  |  |  |  |  |  |  |  |  |  |  |  |  |  |  |  |  |  |
|  | 2 | **SB** |  |  | 2013-07-10 | 2014-08-02 |  |  |  |  |  |  |  |  |  |  |  |  |  |  |
| 8250CP1410 |  | CP14 - Excavate & Erect Support Structure from SB |  | 22d | 2013-07-10 A | 2014-03-26 A | 8250CP1380 SS, 8250GT1980 | 100% | 2014-02-04 | 2014-02-28 |  |  | General tunnel worker (Shift 1 - crew of 10) [2200 h]; General tunnel worker (Shift 2 - crew of 10) [2200 h]; General Steel Worker (crew of 4) [880 h]; Tunnel Carpenter (crew of 4) [880 h]; Scaffolders in Tunnel (crew of 6) [1320 h]; Tunnel Concrete Workers (Crew of 4) [880 h]; Tunnel Steel & Rebar Workers (crew of 4) [880 h]; General Labor (Crew of 4) [880 h]; Drilling Rig [220 h]; Muck Car [220 h]; Gantry Crane [220 h]; Dump Truck [220 h]; Crawler Crane [220 h]; Locomotive [220 h] | CONS | 2575 | CP14 |  |  |  |  |
| 8250CP1415 |  | CP14 - Permanent Concrete Works from SB (Opening/Entrance) |  | 39d | 2014-04-14 A | 2014-08-02 A | 8250CP1410 | 100% | 2014-03-01 | 2014-04-16 |  |  | Tunnel Concrete Workers (Crew of 4) [1950 h]; Tunnel Steel & Rebar Workers (crew of 4) [1950 h]; General Labor (Crew of 4) [1950 h]; Concrete Pump [390 h]; Grouting Machine [390 h]; Crawler Crane [390 h]; General tunnel worker (Shift 1 - crew of 10) [4875 h]; General Steel Worker (crew of 4) [1950 h]; Tunnel Carpenter (crew of 4) [1950 h]; Scaffolders in Tunnel (crew of 6) [2925 h] | CONS | 2575 | CP14 |  |  |  |  |
|  | 9 | **CP 15** |  |  | 2013-07-12 | 2015-04-27 |  |  |  |  |  |  |  |  |  |  |  |  |  |  |
|  | 1 | **NB** |  |  | 2014-12-03 | 2015-04-27 |  |  |  |  |  |  |  |  |  |  |  |  |  |  |
| 8250CC11310 |  | NB(CP15) - Saw Cutting |  | 4d | 2015-01-02 A | 2015-01-06 A | 8250CC10080, 8250CP5805 | 100% | 2014-12-31 | 2015-01-05 |  |  | NB CP Labor [1800 h] |  |  |  |  |  |  |  |
| 8250CC11320 |  | NB(CP15) - Excavation(Breaking Segment, Excavation Portal Bottom & Top) |  | 18d | 2015-01-07 A | 2015-02-06 A | 8250CC11310 | 100% | 2015-01-06 | 2015-01-26 |  |  | NB CP Labor [8100 h] |  |  |  |  |  |  |  |
| 8250CC11340 |  | NB(CP15) - Portal Frame |  | 3d | 2015-01-19 A | 2015-02-06 A | 8250CC11330 | 100% | 2015-01-31 | 2015-02-03 |  |  | NB CP Labor [1350 h] |  |  |  |  |  |  |  |
| 8250CC11330 |  | NB(CP15) - Waterproofing Membrane |  | 4d | 2015-02-06 A | 2015-02-28 A | 8250CC11320 | 100% | 2015-01-27 | 2015-01-30 |  |  | NB CP Labor [1800 h] |  |  |  |  |  |  |  |
| 8250CC11350 |  | NB(CP15) - Portal Bottom(Rebar, Formworks, Waterstop, Concreting & Dismantling) |  | 8d | 2015-03-02 A | 2015-03-09 A | 8250CC11340 | 100% | 2015-03-31 | 2015-04-13 |  |  | NB CP Portal Concrete [20 m3]; NB CP Labor [3600 h]; NB CP Formworks [3600 h]; NB CP Concreting [3600 h]; NB CP Rebar [3600 h] |  |  |  |  |  |  |  |
| 8250CC11360 |  | NB(CP15) - Portal Top(Rebar, Falsework, Formworks, Concreting & Curing) |  | 32d | 2015-03-17 A | 2015-03-23 A | 8250CC11350 | 100% | 2015-04-14 | 2015-05-21 |  |  | NB CP Portal Concrete [20 m3]; NB CP Labor [14400 h]; NB CP Formworks [14400 h]; NB CP Concreting [14400 h]; NB CP Rebar [14400 h] |  |  |  |  |  |  |  |
| 8250CC11370 |  | NB(CP15) - Permanent Lining(Rebar, Falsework, Formwork, Waterstop, Arc FW & Concreting) |  | 12d | 2015-04-01 A | 2015-04-18 A | 8250CC11380 SS, 8250CC11670 | 100% | 2015-04-30 | 2015-05-14 |  |  | NB CP Formworks Set [84 Nos]; NB CP's Tunnel Lining [20 m3]; NB CP Labor [5400 h]; NB CP Formworks [5400 h]; NB CP Concreting [5400 h]; NB CP Rebar [5400 h] |  |  |  |  |  |  |  |
| 8250CC11380 |  | NB(CP15) - Dismantle Ring Support |  | 8d | 2015-04-16 A | 2015-04-23 A | 8250CC11360 | 100% | 2015-04-30 | 2015-05-09 |  |  | NB CP Labor [3600 h] |  |  |  |  |  |  |  |
| 8250CC11880 |  | NB(CP15) - Cleaning Invert |  | 4d | 2015-04-24 A | 2015-04-27 A | 8250CC11370, 8250CC11380 | 100% | 2015-04-30 | 2015-05-05 |  |  | NB CP Labor [1800 h] |  |  |  |  |  |  |  |
|  | 1 | **CP15 - Excavate & Erect Support Structure from NB** |  |  | 2014-12-03 | 2014-12-24 |  |  |  |  |  |  |  |  |  |  |  |  |  |  |
| 8250CP5805 |  | CP15- Installation of Temporarty Steel Support |  | 6d | 2014-12-03 A | 2014-12-24 A | 8250CP5505 | 100% | 2014-12-31 | 2015-01-07 |  |  |  |  |  |  |  |  |  |  |
|  | 2 | **CP15 - Permanent Concrete Works from NB (Opening/Entrance & CP Lining)** |  |  |  |  |  |  |  |  |  |  |  |  |  |  |  |  |  |  |
|  | 2 | **SB** |  |  | 2013-07-12 | 2014-08-30 |  |  |  |  |  |  |  |  |  |  |  |  |  |  |
| 8250CP1470 |  | CP15 - Excavate & Erect Support Structure from SB |  | 14d | 2013-07-12 A | 2014-03-11 A | 8250GT1540 FS+11.2d, 8250CC10020 FS-5d, 8250DA1857 | 100% | 2014-01-06 | 2014-01-21 |  |  | General tunnel worker (Shift 1 - crew of 10) [1400 h]; General tunnel worker (Shift 2 - crew of 10) [1400 h]; General Steel Worker (crew of 4) [560 h]; Tunnel Carpenter (crew of 4) [560 h]; Scaffolders in Tunnel (crew of 6) [840 h]; Tunnel Concrete Workers (Crew of 4) [560 h]; Tunnel Steel & Rebar Workers (crew of 4) [560 h]; General Labor (Crew of 4) [560 h]; Drilling Rig [140 h]; Muck Car [140 h]; Gantry Crane [140 h]; Dump Truck [140 h]; Crawler Crane [140 h]; Locomotive [140 h] | CONS | 2575 | CP15 |  |  |  |  |
| 8250CP1490 |  | CP15 - Permanent Concrete Works from SB (Opening/Entrance) |  | 38d | 2014-03-04 A | 2014-08-30 A | 8250CP1470 | 100% | 2014-01-22 | 2014-03-08 |  |  | Concrete Pump [380 h]; Grouting Machine [380 h]; Crawler Crane [380 h]; General tunnel worker (Shift 1 - crew of 10) [4750 h]; General Steel Worker (crew of 4) [1900 h]; Tunnel Carpenter (crew of 4) [1900 h]; Scaffolders in Tunnel (crew of 6) [2850 h]; Tunnel Concrete Workers (Crew of 4) [1900 h]; Tunnel Steel & Rebar Workers (crew of 4) [1900 h]; General Labor (Crew of 4) [1900 h] | CONS | 2575 | CP15 |  |  |  |  |
|  | 12 | **DEFERRED SECTIONS** |  |  |  |  |  |  |  |  |  |  |  |  |  |  |  |  |  |  |
|  | 7 | **CUT & COVER TUNNELS** |  |  | 2011-11-01 | 2017-05-10 |  |  |  |  |  |  |  |  |  |  |  |  |  |  |
|  | 1 | **BAY 1** |  |  | 2011-11-01 | 2017-05-10 |  |  |  |  |  |  |  |  |  |  |  |  |  |  |
| 8250CC1000 |  | Bay 1 Tunnel Base Slab (SB CH 117+405 to 418) |  | 51d | 2011-11-01 A | 2011-12-31 A | 8250ELS760 | 100% |  |  |  |  | Skilled Scaffolder (crew of 6) [4207.5 h]; General Labor (Crew of 4) [2805 h]; Carpenter [2805 h]; Concretors [2805 h]; Steel & Rebar skilled worker (crew of 4) [2805 h]; General Labor (crew of 4) [2805 h]; Concrete [1063 m3]; Crawler Crane [701.25 h] | CONS | 2580 | B1 |  |  |  |  |
| 8250CC1005 |  | Bay 1 Base Slab to Achieve Sufficient Strength without Shoring Support from L7a, L7, L6a, L6 Struts |  | 7d | 2012-01-01 A | 2012-01-07 A | 8250CC1000 | 100% | 2012-01-03 | 2012-01-10 |  |  | Skilled Scaffolder (crew of 6) [462 h]; General Labor (Crew of 4) [308 h]; Carpenter [308 h]; Concretors [308 h]; Steel & Rebar skilled worker (crew of 4) [308 h]; General Labor (crew of 4) [308 h] | CONS | 2580 | B1 |  |  |  |  |
| 8250CC1010 |  | Bay 1 - Remove L7a, L7 Struts |  | 93d | 2012-02-07 A | 2012-05-12 A | 8250CC1005 | 100% | 2012-01-09 | 2012-05-04 |  |  | General Labor (Crew of 4) [5115 h]; Struts installation skilled labor (crew of 5) [6393.75 h]; Strut Skilled labors (Welders & Fitters) (crew of 4) [5115 h]; Steel & Rebar skilled worker (crew of 4) [5115 h] | CONS | 2580 | B1 |  |  |  |  |
| 8250CC1030 |  | Bay 1 - Remove L6a, L6 Struts |  | 10d | 2012-02-07 A | 2012-05-12 A | 8250CC1020 FS+7.7d | 100% | 2012-07-04 | 2012-07-14 |  |  | General Labor (Crew of 4) [550 h]; Struts installation skilled labor (crew of 5) [687.5 h]; Strut Skilled labors (Welders & Fitters) (crew of 4) [550 h]; Steel & Rebar skilled worker (crew of 4) [550 h] | CONS | 2580 | B1 |  |  |  |  |
| 8250CC1020 |  | Bay 1 Tunnel Walls (W3 Wall) |  | 14d | 2012-07-21 A | 2012-08-20 A | 8250CC2180, 8250CC1010 | 100% | 2012-07-31 | 2012-08-15 |  |  | Skilled Scaffolder (crew of 6) [1155 h]; General Labor (Crew of 4) [770 h]; Carpenter [770 h]; Concretors [770 h]; Steel & Rebar skilled worker (crew of 4) [770 h]; General Labor (crew of 4) [770 h]; Crawler Crane [192.5 h]; Concrete [433 m3] | CONS | 2580 | B1 |  |  |  |  |
| 8250CC1035 |  | Bay 1 Tunnel Walls (SB CH 117+405 to 423) |  | 39d | 2012-07-21 A | 2012-08-20 A | 8250CC2190, 8250CC1030 | 100% | 2012-08-31 | 2012-10-17 |  |  | Skilled Scaffolder (crew of 6) [3217.5 h]; General Labor (Crew of 4) [2145 h]; Carpenter [2145 h]; Concretors [2145 h]; Steel & Rebar skilled worker (crew of 4) [2145 h]; General Labor (crew of 4) [2145 h]; Crawler Crane [536.25 h]; Concrete [433 m3] | CONS | 2580 | B1 |  |  |  |  |
| 8250CC1040 |  | Bay 1 Tunnel Roof Slab (SB CH 117+405 to 423) |  | 50d | 2012-08-22 A | 2012-10-22 A | 8250CC1035 FS-13.2d, 8250CC1020 | 100% | 2012-10-04 | 2012-12-01 |  |  | Skilled Scaffolder (crew of 6) [4125 h]; General Labor (Crew of 4) [2750 h]; Carpenter [2750 h]; Concretors [2750 h]; Steel & Rebar skilled worker (crew of 4) [2750 h]; General Labor (crew of 4) [2750 h]; Crawler Crane [687.5 h]; Concrete [598 m3] | CONS | 2580 | B1 |  |  |  |  |
| 8250CC10400 |  | 826 to Complete TBM Dismantling and Return Retrieval Shaft | milestone | 0d | 2016-02-14 A | 2016-02-14 A | 8250SWTDn0220, 8250SWTDn0200, 8250SWTUp0200 | 100% | 2016-09-09 | 2016-09-09 |  | 825_7-day w/o holidays |  |  |  |  | CP4 |  |  |  |
| 8250CC10415-100 |  | U/T Waterproofing works |  | 6d | 2016-02-15 A | 2016-02-21 A | 8250CC10400 | 100% | 2016-09-10 | 2016-09-15 |  | 825_7-day w/o holidays | Bay 1 Entrance Seal, Late Cast Wall & Stitch Joint [13.5 m3] |  |  |  | CP4 |  |  |  |
| 8250CC10415-200 |  | U/T Stitch Joint Construction including rebar fixing, formwork erection and concreting (Pour 1) |  | 10d | 2016-02-22 A | 2016-03-12 A | 8250CC10415-100 | 100% | 2016-09-16 | 2016-09-25 |  | 825_7-day w/o holidays | Bay 1 Entrance Seal, Late Cast Wall & Stitch Joint [22.5 m3] |  |  |  | CP4 |  |  |  |
| 8250CC10415-500 |  | D/T Waterproofing works |  | 6d | 2016-02-22 A | 2016-02-29 A | 8250CC10415-100 | 100% | 2016-09-16 | 2016-09-21 |  | 825_7-day w/o holidays | Bay 1 Entrance Seal, Late Cast Wall & Stitch Joint [13.5 m3] |  |  |  | CP4 |  |  |  |
| 8250CC10415-600 |  | D/T Stitch Joint Construction including rebar fixing, formwork erection and concreting (Pour 1) |  | 10d | 2016-03-01 A | 2016-03-29 A | 8250CC10415-500, 8250CC10415-200 | 100% | 2016-09-16 | 2016-09-25 |  | 825_7-day w/o holidays | Bay 1 Entrance Seal, Late Cast Wall & Stitch Joint [22.5 m3] |  |  |  | CP4 |  |  |  |
| 8250CC10415-300 |  | U/T Stitch Joint Construction including rebar fixing, formwork erection and concreting (Pour 2) |  | 10d | 2016-03-13 A | 2016-03-29 A | 8250CC10415-200 | 100% | 2016-09-16 | 2016-09-25 |  | 825_7-day w/o holidays | Bay 1 Entrance Seal, Late Cast Wall & Stitch Joint [22.5 m3] |  |  |  | CP4 |  |  |  |
| 8250CC10415-700 |  | D/T Stitch Joint Construction including rebar fixing, formwork erection and concreting (Pour 2) |  | 10d | 2016-03-30 A | 2016-04-11 A | 8250CC10415-600, 8250CC10415-300 | 100% | 2016-09-26 | 2016-10-05 |  | 825_7-day w/o holidays | Bay 1 Entrance Seal, Late Cast Wall & Stitch Joint [22.5 m3] |  |  |  | CP4 |  |  |  |
| 8250CC10415-400 |  | U/T Stitch Joint Construction including rebar fixing, formwork erection and concreting (Pour 3) |  | 8d | 2016-04-01 A | 2016-04-09 A | 8250CC10415-300 | 100% | 2016-04-01 | 2016-04-08 |  | 825_7-day w/o holidays | Bay 1 Entrance Seal, Late Cast Wall & Stitch Joint [18 m3] |  |  |  | CP4 |  |  |  |
| 8250CC10415-410 |  | U/T Mass Concrete Invert and Walkways |  | 8d | 2016-04-10 A | 2016-04-26 A | 8250CC10415-400 | 100% | 2016-09-10 | 2016-09-17 |  | 825_7-day w/o holidays | Bay 1 Entrance Seal, Late Cast Wall & Stitch Joint [53.33 m3] |  |  |  | CP4 |  |  |  |
| 8250CC10415-800 |  | D/T Stitch Joint Construction including rebar fixing, formwork erection and concreting (Pour 3) |  | 8d | 2016-04-12 A | 2016-04-24 A | 8250CC10415-700, 8250CC10415-400 | 100% | 2016-10-06 | 2016-10-13 |  | 825_7-day w/o holidays | Bay 1 Entrance Seal, Late Cast Wall & Stitch Joint [18 m3] |  |  |  | CP4 |  |  |  |
| 8250CC10420 |  | D/T Mass Concrete Invert and Walkways |  | 8d | 2016-04-25 A | 2016-04-26 A | 8250CC10415-800, 8250CC10415-410 | 100% | 2016-09-18 | 2016-09-25 |  | 825_7-day w/o holidays | Bay 1 Entrance Seal, Late Cast Wall & Stitch Joint [53.33 m3] |  |  |  | CP4 |  |  |  |
| 8250CC10421 |  | Construction Joint Grouting / Install Cable Brackets at External Wall U/T and D/T (CH117+450NB to Northern Limit) |  | 4d | 2016-04-27 A | 2016-04-30 A | 8250CC10415-410, 8250CC10420 | 100% | 2016-09-10 | 2016-09-13 |  | 825_7-day w/o holidays |  |  |  |  | CP4 |  |  |  |
| 8250CC11390 |  | 826 Degree 1 (Estimate from MTR) | milestone | 0d | 2016-04-30 A | 2016-04-30 A |  | 100% | 2016-06-30 | 2016-06-30 | finish on 2016-06-12 | 825_7-day w/o holidays |  |  |  |  |  | Upd | CP |  |
| 8250CC10425-100 |  | 830 Installation Works (Track works and Overhead line) |  | 10d | 2016-07-05 A | 2016-08-08 A | 8250CC11390 | 100% | 2016-08-31 | 2016-09-09 |  | 825_7-day w/o holidays |  |  |  |  |  |  |  |  |
| 8250CC10430-100 |  | Late Cast Wall - rebar fixing, formwork erection and concreting (Pour 1) - UT&DT |  | 22d | 2016-08-09 A | 2016-09-09 A | 8250CC10425-100 | 100% | 2016-09-09 | 2016-09-28 |  | 6-workday with public holidays |  |  |  |  |  |  |  |  |
| 8250CC10440 |  | Bay 1 - Remaining Walkways/Grouting U/T & D/T(CH117+450 to Northern Limit) |  | 7d | 2016-09-07 A | 2016-09-15 A | 8250CC10430-200 | 100% | 2016-10-18 | 2016-10-25 |  | 825_7-day w/o holidays | Bay 1 Concrete [1183 m3] |  |  |  |  |  | CP |  |
| 8250CC10430-200 |  | Late Cast Wall - rebar fixing, formwork erection and concreting (Pour 2) - UT&DT |  | 10d | 2016-09-10 A | 2016-09-23 A | 8250CC10430-100 | 100% | 2016-10-08 | 2016-10-18 |  | 825_7-day w/o holidays | Bay 1 Entrance Seal, Late Cast Wall & Stitch Joint [197.06 m3] |  |  |  |  |  | CP |  |
| 8250CC10460 |  | Retrieval Shaft Waterproofing Works |  | 23d | 2017-02-27 A | 2017-03-15 A | 8250CC10440 | 100% | 2017-02-28 | 2017-03-25 |  |  |  |  |  |  |  |  |  | CP3 |
| 8250CC10480 |  | Retrieval Shaft Backfilling up to +5mPD (Part 1) |  | 18d | 2017-03-16 A | 2017-03-28 A | 8250CC10460 | 100% | 2017-05-04 | 2017-05-24 |  |  |  |  |  |  |  |  |  | CP3 |
| 8250CC10480-100 |  | Retrieval Shaft Backfilling up to +5mPD (Part 2) |  | 12d | 2017-03-29 A | 2017-05-10 A | 8250CC10480 | 100% | 2017-05-25 | 2017-06-08 |  |  |  |  |  |  |  |  |  | CP3 |

Notes:
- 8250CC10415-100: Steps: Entrance Seal Details
- 8250CC10415-200: Steps: Entrance Seal Details
- 8250CC10415-500: Steps: Entrance Seal Details
- 8250CC10415-600: Steps: Entrance Seal Details
- 8250CC10415-300: Steps: Entrance Seal Details
- 8250CC10415-700: Steps: Entrance Seal Details
- 8250CC10415-400: Steps: Entrance Seal Details
- 8250CC10415-800: Steps: Entrance Seal Details
- 8250CC10430-200: Notes: 825 to start Late Cast Wall by 9 weeks after 830 access the 826 tunnels. / 825 to share access with 830 / Steps: Late Cast Wall Details

| ID | WBS | Activity | Duration | Start | Finish | Predecessors | Complete | Planned start | Planned finish | Resources | 825 Phase | 825 Location | 825 Sub-location |
| --- | --- | --- | --- | --- | --- | --- | --- | --- | --- | --- | --- | --- | --- |
|  | 2 | **BAY 2** |  | 2012-01-03 | 2012-12-28 |  |  |  |  |  |  |  |  |
| 8250CC2180 |  | Bay 2 Tunnel Base Slab (SB CH 117+418 to 430) | 12d | 2012-01-03 A | 2012-01-16 A | 8250CC1000 | 100% | 2010-02-08 | 2010-02-24 | Skilled Scaffolder (crew of 6) [990 h]; General Labor (Crew of 4) [660 h]; Carpenter [660 h]; Concretors [660 h]; Steel & Rebar skilled worker (crew of 4) [660 h]; General Labor (crew of 4) [660 h]; Concrete [1067 m3]; Crawler Crane [165 h] | CONS | 2580 | B2 |
| 8250CC2185 |  | Bay 2 Base Slab to Achieve Sufficient Strength without Shoring Support from L7a, L7, L6 Struts | 7d | 2012-01-17 A | 2012-01-23 A | 8250CC2180 | 100% | 2010-02-25 | 2010-03-04 | Skilled Scaffolder (crew of 6) [462 h]; General Labor (Crew of 4) [308 h]; Carpenter [308 h]; Concretors [308 h]; Steel & Rebar skilled worker (crew of 4) [308 h]; General Labor (crew of 4) [308 h] | CONS | 2580 | B2 |
| 8250CC2190 |  | Bay 2 - Remove L7a, L7, L6 Struts | 78d | 2012-02-07 A | 2012-05-12 A | 8250CC1010 FF+6.6d, 8250CC2185 | 100% | 2010-03-04 | 2010-06-09 | General Labor (Crew of 4) [4290 h]; Struts installation skilled labor (crew of 5) [5362.5 h]; Strut Skilled labors (Welders & Fitters) (crew of 4) [4290 h]; Steel & Rebar skilled worker (crew of 4) [4290 h] | CONS | 2580 | B2 |
| 8250CC3080 |  | Bay 2 Tunnel Walls (SB CH 117+423 to 437) | 32d | 2012-07-26 A | 2012-08-11 A | 8250CC4240, 8250CC3070 FS+51.7d | 100% | 2012-06-27 | 2012-08-03 | Skilled Scaffolder (crew of 6) [2640 h]; General Labor (Crew of 4) [1760 h]; Carpenter [1760 h]; Concretors [1760 h]; Steel & Rebar skilled worker (crew of 4) [1760 h]; General Labor (crew of 4) [1760 h]; Concrete [879 m3]; Crawler Crane [440 h] | CONS | 2580 | B2 |
| 8250CC3100 |  | Bay 2 Tunnel Roof Slab (SB CH 117+423 to 437) | 36d | 2012-08-03 A | 2012-10-22 A | 8250CC3080 FS+6.6d, 8250CC4260 | 100% | 2012-09-17 | 2012-10-31 | Skilled Scaffolder (crew of 6) [2970 h]; General Labor (Crew of 4) [1980 h]; Carpenter [1980 h]; Concretors [1980 h]; Steel & Rebar skilled worker (crew of 4) [1980 h]; General Labor (crew of 4) [1980 h]; Concrete [553 m3]; Crawler Crane [495 h] | CONS | 2580 | B2 |
| 8250CC7350 |  | Backfill Void between Diaphragm Walls & Tunnel Walls with Mass Concrete (Bay 1-6) | 4d | 2012-11-17 A | 2012-12-28 A | 8250CC4280, 8250CC1040, 8250CC5160, 8250CC3100, 8250CC6340 | 100% | 2012-11-15 | 2012-11-19 | General Labor (Crew of 4) [220 h] | CONS | 2580 | B2 |
|  | 3 | **BAY 3** |  | 2012-02-27 | 2012-09-20 |  |  |  |  |  |  |  |  |
| 8250CC3060 |  | Bay 3 Tunnel Base Slab (SB CH 117+430 to 443) | 57d | 2012-02-27 A | 2012-03-22 A | 8250CC2180 | 100% | 2010-02-25 | 2010-05-07 | Skilled Scaffolder (crew of 6) [4702.5 h]; General Labor (Crew of 4) [3135 h]; Concretors [3135 h]; Steel & Rebar skilled worker (crew of 4) [4702.5 h]; General Labor (crew of 4) [3135 h]; Steel & Rebar skilled worker (crew of 4) [3135 h]; Concrete [638 m3]; Crawler Crane [783.75 h]; Carpenter [3135 h] | CONS | 2580 | B3 |
| 8250CC3065 |  | Bay 3 Base Slab to Achieve Sufficient Strength without Shoring Support from L7, L6 Struts | 7d | 2012-03-23 A | 2012-03-30 A | 8250CC3060 | 100% | 2010-05-08 | 2010-05-15 | Skilled Scaffolder (crew of 6) [462 h]; General Labor (Crew of 4) [308 h]; Carpenter [308 h]; Concretors [308 h]; Steel & Rebar skilled worker (crew of 4) [308 h]; General Labor (crew of 4) [308 h] | CONS | 2580 | B3 |
| 8250CC3070 |  | Bay 3 - Remove L7, L6 Struts | 23d | 2012-04-23 A | 2012-04-30 A | 8250CC3065 | 100% | 2010-05-15 | 2010-06-11 | General Labor (Crew of 4) [1265 h]; Struts installation skilled labor (crew of 5) [1581.25 h]; Strut Skilled labors (Welders & Fitters) (crew of 4) [1265 h]; Steel & Rebar skilled worker (crew of 4) [1265 h] | CONS | 2580 | B3 |
| 8250CC4260 |  | Bay 3 Tunnel Walls (SB CH 117+437 to 451) | 36d | 2012-06-03 A | 2012-09-20 A | 8250CC5120, 8250CC4250 FS+18.7d | 100% | 2012-04-26 | 2012-06-08 | Skilled Scaffolder (crew of 6) [2970 h]; General Labor (Crew of 4) [1980 h]; Carpenter [1980 h]; Concretors [1980 h]; General Labor (crew of 4) [1980 h]; Steel & Rebar skilled worker (crew of 4) [1980 h]; Crawler Crane [495 h]; Concrete [727 m3] | CONS | 2580 | B3 |
| 8250CC4280 |  | Bay 3 Tunnel Roof Slab (SB CH 117+437 to 451) | 36d | 2012-07-13 A | 2012-09-20 A | 8250CC4260 FS+2.2d | 100% | 2012-09-18 | 2012-11-01 | Skilled Scaffolder (crew of 6) [2970 h]; General Labor (Crew of 4) [1980 h]; Carpenter [1980 h]; Steel & Rebar skilled worker (crew of 4) [1980 h]; General Labor (crew of 4) [1980 h]; Concrete [605 m3]; Crawler Crane [495 h]; Concretors [1980 h] | CONS | 2580 | B3 |
|  | 4 | **BAY 4** |  | 2011-12-21 | 2012-09-03 |  |  |  |  |  |  |  |  |
| 8250CC4240 |  | Bay 4 Tunnel Base Slab (SB CH 117+443 to 455) | 14d | 2011-12-21 A | 2012-01-09 A | 8250CC1000 FS-8.8d | 100% | 2010-02-08 | 2010-02-26 | Skilled Scaffolder (crew of 6) [1155 h]; General Labor (Crew of 4) [770 h]; Carpenter [770 h]; Concretors [770 h]; Steel & Rebar skilled worker (crew of 4) [770 h]; General Labor (crew of 4) [770 h]; Crawler Crane [192.5 h]; Concrete [647 m3] | CONS | 2580 | B4 |
| 8250CC4245 |  | Bay 4 Base Slab to Achieve Sufficient Strength without Shoring Support from L7, L6 Struts | 7d | 2012-01-10 A | 2012-01-16 A | 8250CC4240 | 100% | 2010-02-27 | 2010-03-06 | Skilled Scaffolder (crew of 6) [462 h]; General Labor (Crew of 4) [308 h]; Carpenter [308 h]; Concretors [308 h]; Steel & Rebar skilled worker (crew of 4) [308 h]; General Labor (crew of 4) [308 h] | CONS | 2580 | B4 |
| 8250CC4250 |  | Bay 4 - Remove L7, L6 Struts | 7d | 2012-05-02 A | 2012-05-09 A | 8250CC4245, 8250CC3070 | 100% | 2010-06-12 | 2010-06-22 | General Labor (Crew of 4) [385 h]; Struts installation skilled labor (crew of 5) [481.25 h]; Strut Skilled labors (Welders & Fitters) (crew of 4) [385 h]; Steel & Rebar skilled worker (crew of 4) [385 h] | CONS | 2580 | B4 |
| 8250CC5140 |  | Bay 4 Tunnel Walls (SB CH 117+451 to 464) | 36d | 2012-07-07 A | 2012-07-28 A | 8250CC5130 FS+20.9d, 8250CC6300 | 100% | 2012-06-04 | 2012-07-17 | Skilled Scaffolder (crew of 6) [2970 h]; General Labor (Crew of 4) [1980 h]; Carpenter [1980 h]; Concretors [1980 h]; Steel & Rebar skilled worker (crew of 4) [1980 h]; General Labor (crew of 4) [1980 h]; Crawler Crane [495 h]; Concrete [756 m3] | CONS | 2580 | B4 |
| 8250CC5160 |  | Bay 4 Tunnel Roof Slab (SB CH 117+451 to 464) | 36d | 2012-07-13 A | 2012-09-03 A | 8250CC6320, 8250CC5140 FS+6.6d | 100% | 2012-08-31 | 2012-10-13 | Skilled Scaffolder (crew of 6) [2970 h]; General Labor (Crew of 4) [1980 h]; Carpenter [1980 h]; Concretors [1980 h]; Steel & Rebar skilled worker (crew of 4) [1980 h]; General Labor (crew of 4) [1980 h]; Concrete [576 m3]; Crawler Crane [495 h] | CONS | 2580 | B4 |
|  | 5 | **BAY 5** |  | 2012-03-23 | 2012-08-24 |  |  |  |  |  |  |  |  |
| 8250CC5120 |  | Bay 5 Tunnel Base Slab (SB CH 117+455 to 467) | 25d | 2012-03-23 A | 2012-04-26 A | 8250CC4240 | 100% | 2012-03-23 | 2012-04-25 | Skilled Scaffolder (crew of 6) [2062.5 h]; General Labor (Crew of 4) [1375 h]; Carpenter [1375 h]; Concretors [1375 h]; Steel & Rebar skilled worker (crew of 4) [1375 h]; General Labor (crew of 4) [1375 h]; Crawler Crane [22 h]; Concrete [605 m3] | CONS | 2580 | B5 |
| 8250CC5125 |  | Bay 5 Base Slab to Achieve Sufficient Strength without Shoring Support from L7, L6 Struts | 7d | 2012-04-27 A | 2012-05-02 A | 8250CC5120 | 100% | 2012-04-26 | 2012-05-04 | Skilled Scaffolder (crew of 6) [462 h]; General Labor (Crew of 4) [308 h]; Carpenter [308 h]; Concretors [308 h]; Steel & Rebar skilled worker (crew of 4) [308 h]; General Labor (crew of 4) [308 h] | CONS | 2580 | B5 |
| 8250CC5130 |  | Bay 5 - Remove L7, L6 Struts | 7d | 2012-05-09 A | 2012-05-15 A | 8250CC6310, 8250CC5125 | 100% | 2012-05-03 | 2012-05-10 | General Labor (Crew of 4) [385 h]; Struts installation skilled labor (crew of 5) [481.25 h]; Strut Skilled labors (Welders & Fitters) (crew of 4) [385 h]; Steel & Rebar skilled worker (crew of 4) [385 h] | CONS | 2580 | B5 |
| 8250CC6320 |  | Bay 5 Tunnel Walls (SB CH 117+464 to 478) | 36d | 2012-05-17 A | 2012-06-28 A | 8250CC6310 FS+5.5d | 100% | 2010-07-07 | 2010-08-18 | Concrete [848 m3]; Skilled Scaffolder (crew of 6) [2970 h]; General Labor (Crew of 4) [1980 h]; Carpenter [1980 h]; Concretors [1980 h]; Steel & Rebar skilled worker (crew of 4) [1980 h]; General Labor (crew of 4) [1980 h]; Crawler Crane [495 h] | CONS | 2580 | B5 |
| 8250CC6340 |  | Bay 5 Tunnel Roof Slab (SB CH 117+464 to 478) | 36d | 2012-07-30 A | 2012-08-24 A | 8250CC6320 FS+3.3d | 100% | 2012-08-31 | 2012-10-13 | Skilled Scaffolder (crew of 6) [2970 h]; General Labor (Crew of 4) [1980 h]; Carpenter [1980 h]; Concretors [1980 h]; Steel & Rebar skilled worker (crew of 4) [1980 h]; General Labor (crew of 4) [1980 h]; Crawler Crane [495 h]; Concrete [559 m3] | CONS | 2580 | B5 |

| ID | WBS | Activity | Duration | Start | Finish | Predecessors | Complete | Planned start | Planned finish | Resources | 825 Phase | 825 Location | 825 Sub-location |
| --- | --- | --- | --- | --- | --- | --- | --- | --- | --- | --- | --- | --- | --- |
|  | 6 | **BAY 6** |  | 2011-12-30 | 2012-05-09 |  |  |  |  |  |  |  |  |
| 8250CC6300 |  | Bay 6 Tunnel Base Slab (SB CH 117+467 to 479) | 14d | 2011-12-30 A | 2012-01-18 A | 8250CC1000 | 100% | 2010-02-08 | 2010-02-26 | Steel & Rebar skilled worker (crew of 4) [770 h]; General Labor (crew of 4) [770 h]; Concrete [621 m3]; Crawler Crane [192.5 h]; Skilled Scaffolder (crew of 6) [1155 h]; General Labor (Crew of 4) [770 h]; Carpenter [770 h]; Concretors [770 h] | CONS | 2580 | B6 |
| 8250CC6305 |  | Bay 6 Base Slab to Achieve Sufficient Strength without Shoring Support from L7, L6 Struts | 7d | 2012-01-19 A | 2012-01-25 A | 8250CC6300 | 100% | 2010-02-27 | 2010-03-06 | Skilled Scaffolder (crew of 6) [462 h]; General Labor (Crew of 4) [308 h]; Carpenter [308 h]; Concretors [308 h]; Steel & Rebar skilled worker (crew of 4) [308 h]; General Labor (crew of 4) [308 h] | CONS | 2580 | B6 |
| 8250CC6310 |  | Bay 6 - Remove L7, L6 Struts | 7d | 2012-05-03 A | 2012-05-09 A | 8250CC6305, 8250CC4250 | 100% | 2010-06-22 | 2010-06-30 | General Labor (Crew of 4) [385 h]; Struts installation skilled labor (crew of 5) [481.25 h]; Strut Skilled labors (Welders & Fitters) (crew of 4) [385 h]; Steel & Rebar skilled worker (crew of 4) [385 h] | CONS | 2580 | B6 |
|  | 7 | **BAY 7** |  | 2013-12-23 | 2015-05-15 |  |  |  |  |  |  |  |  |
|  | 1 | **NORTH BOUND** |  | 2015-03-26 | 2015-05-15 |  |  |  |  |  |  |  |  |
| 8250CC7500 |  | Bay 7 Tunnel Base Slab (SB CH 117+479 to 493), NB Tunnel | 21d | 2015-03-26 A | 2015-04-04 A | 8250NBDIS0520 | 100% | 2015-03-31 | 2015-04-28 | Gantry Crane [210 h]; NB Bay 7 & Bay 8 - Invert Slab, Wall, Roof & Walkways [91 m3]; General Labor (Crew of 4) [1050 h]; Carpenter [1050 h]; Concretors [1050 h]; Steel & Rebar skilled worker (crew of 4) [1050 h]; Struts installation skilled labor (crew of 5) [1312.5 h]; General Labor (crew of 4) [1050 h]; Strut Skilled labors (Welders & Fitters) (crew of 4) [1050 h]; Crawler Crane [210 h]; Grouting Machine [210 h]; Concrete Pump [210 h]; Generator [210 h] | CONS | 2580 | B7 |
| 8250CC7510 |  | Bay 7 Tunnel Walls (SB CH 117+479 to 493), NB Tunnel | 21d | 2015-04-06 A | 2015-04-25 A | 8250CC7500 | 100% | 2015-05-06 | 2015-05-30 | Strut Skilled labors (Welders & Fitters) (crew of 4) [1050 h]; Steel & Rebar skilled worker (crew of 4) [1050 h]; Crawler Crane [210 h]; Grouting Machine [210 h]; Concrete Pump [210 h]; Generator [210 h]; Gantry Crane [210 h]; Carpenter [1050 h]; General Labor (crew of 4) [1050 h]; NB Bay 7 & Bay 8 - Invert Slab, Wall, Roof & Walkways [151 m3]; General Labor (Crew of 4) [1050 h]; Concretors [1050 h]; Struts installation skilled labor (crew of 5) [1312.5 h] | CONS | 2580 | B7 |
| 8250CC7520 |  | Bay 7 Tunnel Roof Slab (SB CH 117+479 to 493), NB Tunnel | 21d | 2015-04-27 A | 2015-05-15 A | 8250CC7510 FS-6d | 100% | 2015-04-30 | 2015-05-26 | General Labor (Crew of 4) [1050 h]; Carpenter [1050 h]; Concretors [1050 h]; Steel & Rebar skilled worker (crew of 4) [1050 h]; Struts installation skilled labor (crew of 5) [1312.5 h]; General Labor (crew of 4) [1050 h]; Strut Skilled labors (Welders & Fitters) (crew of 4) [1050 h]; Crawler Crane [210 h]; Grouting Machine [210 h]; Concrete Pump [210 h]; Generator [210 h]; Gantry Crane [210 h]; NB Bay 7 & Bay 8 - Invert Slab, Wall, Roof & Walkways [302 m3] | CONS | 2580 | B7 |
|  | 2 | **SOUTH BOUND** |  | 2013-12-23 | 2014-04-03 |  |  |  |  |  |  |  |  |
| 8250CC7360 |  | Bay 7 Tunnel Base Slab (SB CH 117+479 to 493), SB Tunnel | 25d | 2013-12-23 A | 2014-01-08 A | 8250CC10130, 8250SB1540 FS+10d | 100% | 2013-12-02 | 2014-01-02 | General Labor (Crew of 4) [1250 h]; Carpenter [1250 h]; Concretors [1250 h]; Steel & Rebar skilled worker (crew of 4) [1250 h]; Struts installation skilled labor (crew of 5) [1562.5 h]; General Labor (crew of 4) [1250 h]; Strut Skilled labors (Welders & Fitters) (crew of 4) [1250 h]; Crawler Crane [250 h]; Grouting Machine [250 h]; Concrete Pump [250 h]; Generator [250 h]; Gantry Crane [250 h] | CONS | 2580 | B7 |
| 8250CC7370 |  | Bay 7 Tunnel Walls (SB CH 117+479 to 493), SB Tunnel | 25d | 2014-01-09 A | 2014-01-29 A | 8250CC7360 | 100% | 2014-01-03 | 2014-01-31 | General Labor (Crew of 4) [1250 h]; Carpenter [1250 h]; Concretors [1250 h]; Steel & Rebar skilled worker (crew of 4) [1250 h]; Struts installation skilled labor (crew of 5) [1562.5 h]; General Labor (crew of 4) [1250 h]; Strut Skilled labors (Welders & Fitters) (crew of 4) [1250 h]; Crawler Crane [250 h]; Grouting Machine [250 h]; Concrete Pump [250 h]; Generator [250 h]; Gantry Crane [250 h] | CONS | 2580 | B7 |
| 8250CC7380 |  | Bay 7 Tunnel Roof Slab (SB CH 117+479 to 493), SB Tunnel | 24d | 2014-02-18 A | 2014-04-03 A | 8250CC7370 | 100% | 2014-02-04 | 2014-03-03 | General Labor (Crew of 4) [1200 h]; Carpenter [1200 h]; Concretors [1200 h]; Steel & Rebar skilled worker (crew of 4) [1200 h]; Struts installation skilled labor (crew of 5) [1500 h]; General Labor (crew of 4) [1200 h]; Strut Skilled labors (Welders & Fitters) (crew of 4) [1200 h]; Crawler Crane [240 h]; Grouting Machine [240 h]; Concrete Pump [240 h]; Generator [240 h]; Gantry Crane [240 h] | CONS | 2580 | B7 |
|  | 8 | **BAY 8** |  | 2014-02-10 | 2016-05-31 |  |  |  |  |  |  |  |  |
|  | 1 | **NORTH BOUND** |  | 2015-04-10 | 2016-05-31 |  |  |  |  |  |  |  |  |
| 8250CC7530 |  | Bay 8 Tunnel Base Slab (SB CH 117+493 to 506), NB Tunnel | 21d | 2015-04-10 A | 2015-04-25 A | 8250CC7500, 8250CC10130 | 100% | 2015-05-06 | 2015-05-30 | General Labor (Crew of 4) [1050 h]; Carpenter [1050 h]; Concretors [1050 h]; Steel & Rebar skilled worker (crew of 4) [1050 h]; Struts installation skilled labor (crew of 5) [1312.5 h]; General Labor (crew of 4) [1050 h]; Strut Skilled labors (Welders & Fitters) (crew of 4) [1050 h]; Crawler Crane [210 h]; Grouting Machine [210 h]; Concrete Pump [210 h]; Generator [210 h]; Gantry Crane [210 h]; NB Bay 7 & Bay 8 - Invert Slab, Wall, Roof & Walkways [91 m3] | CONS | 2580 | B8 |
| 8250CC7540 |  | Bay 8 Tunnel Walls (SB CH 117+493 to 506), NB Tunnel | 21d | 2015-04-27 A | 2015-05-16 A | 8250CC7510, 8250CC7530 | 100% | 2015-04-30 | 2015-05-26 | General Labor (Crew of 4) [1050 h]; Carpenter [1050 h]; Concretors [1050 h]; Steel & Rebar skilled worker (crew of 4) [1050 h]; Struts installation skilled labor (crew of 5) [1312.5 h]; General Labor (crew of 4) [1050 h]; Strut Skilled labors (Welders & Fitters) (crew of 4) [1050 h]; Crawler Crane [210 h]; Grouting Machine [210 h]; Concrete Pump [210 h]; Generator [210 h]; Gantry Crane [210 h]; NB Bay 7 & Bay 8 - Invert Slab, Wall, Roof & Walkways [151 m3] | CONS | 2580 | B8 |
| 8250CC7550 |  | Bay 8 Tunnel Roof Slab (NB CH 117+509 to 523), NB Tunnel | 21d | 2015-05-17 A | 2015-06-03 A | 8250CC7540 FS-7d, 8250CC7520 FS-6d | 100% | 2015-06-17 | 2015-07-13 | Carpenter [1050 h]; Concretors [1050 h]; Steel & Rebar skilled worker (crew of 4) [1050 h]; Struts installation skilled labor (crew of 5) [1312.5 h]; General Labor (crew of 4) [1050 h]; Strut Skilled labors (Welders & Fitters) (crew of 4) [1050 h]; Crawler Crane [210 h]; Grouting Machine [210 h]; Concrete Pump [210 h]; Generator [210 h]; Gantry Crane [210 h]; General Labor (Crew of 4) [1050 h]; NB Bay 7 & Bay 8 - Invert Slab, Wall, Roof & Walkways [302 m3] | CONS | 2580 | B8 |
| 8250CC9480 |  | Installation of Cable Brackets from Bay 7~8 (NB) | 4d | 2015-06-12 A | 2015-07-08 A | 8250CC7550 | 100% | 2015-06-30 | 2015-07-04 |  |  |  |  |
| 8250CC7560 |  | Backfill Void between Diaphragm Walls & Tunnel Walls with Mass Concrete (Bay 7-8), NB Tunnel | 7d | 2015-07-01 A | 2015-07-30 A | 8250CC7550, 8250CC7520 | 100% | 2015-10-31 | 2015-11-07 | General Labor (Crew of 4) [350 h]; Drilling Rig [70 h]; Dump Truck [70 h]; Crawler Crane [70 h] | CONS | 2580 | B8 |
| 8250CC9464 |  | Invert & Walkway for Cut & Cover Tunnels Bay 7~8 (NB) | 7d | 2016-05-02 A | 2016-05-31 A | 8250CC7550, 8250CC11535 SS, 8250CC11535 FF | 100% | 2016-08-31 | 2016-09-07 | Concrete Pump [70 h]; Grouting Machine [70 h]; Dump Truck [70 h]; Crawler Crane [70 h]; General Labor (Crew of 4) [350 h]; Carpenter [350 h]; Concretors [350 h]; Steel & Rebar skilled worker (crew of 4) [350 h]; Struts installation skilled labor (crew of 5) [437.5 h]; General Labor (crew of 4) [350 h]; Strut Skilled labors (Welders & Fitters) (crew of 4) [350 h]; NB Bay 7 & Bay 8 - Invert Slab, Wall, Roof & Walkways [803 m3] | CONS | 2580 | BINV |
|  | 2 | **SOUTH BOUND** |  | 2014-02-10 | 2014-04-30 |  |  |  |  |  |  |  |  |
| 8250CC7390 |  | Bay 8 Tunnel Base Slab (SB CH 117+493 to 506), SB Tunnel | 25d | 2014-02-10 A | 2014-03-05 A | 8250CC10130, 8250CC7360 | 100% | 2014-01-03 | 2014-01-31 | General Labor (Crew of 4) [1250 h]; Concretors [1250 h]; Carpenter [1250 h]; Steel & Rebar skilled worker (crew of 4) [1250 h]; Struts installation skilled labor (crew of 5) [1562.5 h]; General Labor (crew of 4) [1250 h]; Strut Skilled labors (Welders & Fitters) (crew of 4) [1250 h]; Crawler Crane [250 h]; Grouting Machine [250 h]; Concrete Pump [250 h]; Generator [250 h]; Gantry Crane [250 h] | CONS | 2580 | B8 |
| 8250CC7400 |  | Bay 8 Tunnel Walls (SB CH 117+493 to 506), SB Tunnel | 25d | 2014-03-06 A | 2014-04-04 A | 8250CC7390, 8250CC7370 | 100% | 2014-02-04 | 2014-03-04 | Generator [250 h]; Gantry Crane [250 h]; General Labor (Crew of 4) [1250 h]; Carpenter [1250 h]; Concretors [1250 h]; Steel & Rebar skilled worker (crew of 4) [1250 h]; Struts installation skilled labor (crew of 5) [1562.5 h]; General Labor (crew of 4) [1250 h]; Strut Skilled labors (Welders & Fitters) (crew of 4) [1250 h]; Crawler Crane [250 h]; Grouting Machine [250 h]; Concrete Pump [250 h] | CONS | 2580 | B8 |
| 8250CC7410 |  | Bay 8 Tunnel Roof Slab (NB CH 117+509 to 523), SB Tunnel | 25d | 2014-04-05 A | 2014-04-26 A | 8250CC7380 SS+5d, 8250CC7400 | 100% | 2014-03-05 | 2014-04-02 | General Labor (Crew of 4) [1250 h]; Carpenter [1250 h]; Concretors [1250 h]; Steel & Rebar skilled worker (crew of 4) [1250 h]; Struts installation skilled labor (crew of 5) [1562.5 h]; General Labor (crew of 4) [1250 h]; Strut Skilled labors (Welders & Fitters) (crew of 4) [1250 h]; Crawler Crane [250 h]; Grouting Machine [250 h]; Concrete Pump [250 h]; Generator [250 h]; Gantry Crane [250 h] | CONS | 2580 | B8 |
| 8250CC7420 |  | Backfill Void between Diaphragm Walls & Tunnel Walls with Mass Concrete (Bay 7-8), SB Tunnel | 1d | 2014-04-28 A | 2014-04-30 A | 8250CC7380, 8250CC7410 | 100% | 2014-09-01 | 2014-09-01 | General Labor (Crew of 4) [50 h]; Drilling Rig [10 h]; Dump Truck [10 h]; Crawler Crane [10 h] | CONS | 2580 | B8 |

| ID | WBS | Activity | Duration | Start | Finish | Predecessors | Complete | Planned start | Planned finish | Resources | 825 Phase | 825 Location | 825 Sub-location | DRP Rev5 Filter | Critical Path 1 and 2 |
| --- | --- | --- | --- | --- | --- | --- | --- | --- | --- | --- | --- | --- | --- | --- | --- |
|  | 9 | **BRACKETS** |  | 2014-03-19 | 2014-05-22 |  |  |  |  |  |  |  |  |  |  |
| 8250CC7440 |  | Install Brackets for Cut & Cover Tunnels (Supply by 846) South of NB CH 117+450, SB Tunnel | 8d | 2014-03-19 A | 2014-05-22 A | 8250CC7430 FF, 8250CC7430 SS | 100% | 2014-04-03 | 2014-04-12 | Crawler Crane [80 h]; Generator [80 h]; Welding Machine [80 h]; General Labor (Crew of 4) [400 h]; Concretors [400 h]; Steel & Rebar skilled worker (crew of 4) [400 h]; General Labor (crew of 4) [400 h]; Skilled Scaffolder (crew of 6) [600 h] | CONS | 2580 | BBR |  |  |
|  | 10 | **INVERT SLABS AND WALKWAYS** |  | 2014-03-03 | 2014-03-14 |  |  |  |  |  |  |  |  |  |  |
| 8250CC7430 |  | First Stage Concrete for Tunnel Invert & Walkway for Cut & Cover Tunnels South of NB CH 117+450, SB Tunnel | 11d | 2014-03-03 A | 2014-03-14 A | 8250CC7410 | 100% | 2014-09-01 | 2014-09-13 | Grouting Machine [110 h]; Dump Truck [110 h]; Crawler Crane [110 h]; General Labor (Crew of 4) [550 h]; Carpenter [440 h]; Concretors [550 h]; Steel & Rebar skilled worker (crew of 4) [550 h]; Struts installation skilled labor (crew of 5) [687.5 h]; General Labor (crew of 4) [550 h]; Strut Skilled labors (Welders & Fitters) (crew of 4) [550 h]; Concrete Pump [110 h] | CONS | 2580 | BINV |  |  |
|  | 11 | **INTERFACE WITH 826** |  |  |  |  |  |  |  |  |  |  |  |  |  |
|  | 8 | **VENTILATION BUILDING, TEMP. ACCESS, STRUTS REMOVAL & BACKFILL** |  | 2012-10-19 | 2016-10-15 |  |  |  |  |  |  |  |  |  |  |
|  | 1 | **VENTILATION BUILDING** |  | 2012-10-19 | 2016-10-15 |  |  |  |  |  |  |  |  |  |  |
|  | 1 | **EARTHWORKS AND ELS** |  | 2012-10-19 | 2016-10-15 |  |  |  |  |  |  |  |  |  |  |
| 8250VB1080 |  | Remove L5 Struts at -15.0 mPD | 2d | 2012-10-19 A | 2012-11-09 A | 8250VB1060 | 100% | 2012-12-19 | 2012-12-20 | Steel & Rebar skilled worker (crew of 4) [110 h]; Strut Skilled labors (Welders & Fitters) (crew of 4) [110 h]; General Labor (Crew of 4) [110 h]; Skilled Scaffolder (crew of 6) [165 h] | CONS | 2585 | VB |  |  |
| 8250VB1120 |  | Remove L4a Struts at -14.0 mPD | 0.7d | 2012-10-19 A | 2012-11-09 A | 8250VB1100 | 100% | 2012-12-21 | 2012-12-22 | Steel & Rebar skilled worker (crew of 4) [40 h]; Strut Skilled labors (Welders & Fitters) (crew of 4) [40 h]; Skilled Scaffolder (crew of 6) [60 h]; General Labor (Crew of 4) [40 h] | CONS | 2585 | VB |  |  |
| 8250VB1000 |  | Remove L5 Struts at -16.0 mPD (those Across VB and those on the North Side of VB) | 6d | 2012-10-22 A | 2012-12-17 A | 8250CC7350 | 100% | 2012-11-05 | 2012-11-10 | Steel & Rebar skilled worker (crew of 4) [330 h]; Strut Skilled labors (Welders & Fitters) (crew of 4) [330 h]; General Labor (Crew of 4) [330 h]; Skilled Scaffolder (crew of 6) [495 h]; Crawler Crane [66 h]; Welding Machine [66 h] | CONS | 2585 | VB |  |  |
| 8250VB1060 |  | Backfill to -16.0 mPD (Area on North Side of VB) | 2d | 2012-11-17 A | 2012-11-21 A | 8250VB1040, 8250VB1020 | 100% | 2013-01-31 | 2013-02-01 | General Labor (Crew of 4) [110 h]; General Labor (crew of 4) [110 h] | CONS | 2585 | VB |  |  |
| 8250VB1100 |  | Backfill to from -16.0 to -15.0 mPD (Area on North Side of VB) | 0.75d | 2012-11-22 A | 2012-11-22 A | 8250VB1080 | 100% | 2013-02-02 | 2013-02-02 | General Labor (Crew of 4) [40 h]; General Labor (crew of 4) [40 h] | CONS | 2585 | VB |  |  |
| 8250VB1200 |  | Remove L4 struts at -11.5 mPD | 6d | 2012-12-03 A | 2012-12-21 A | 8250VB1180 | 100% | 2013-01-15 | 2013-01-22 | General Labor (Crew of 4) [330 h]; Strut Skilled labors (Welders & Fitters) (crew of 4) [330 h]; General Labor (crew of 4) [330 h]; Skilled Scaffolder (crew of 6) [495 h] | CONS | 2585 | VB |  |  |
| 8250VB1180 |  | Backfill from -15.0 to -12.5 mPD (Area on North Side of VB) | 3d | 2013-01-08 A | 2013-01-12 A | 8250VB1160 | 100% | 2013-01-31 | 2013-02-02 | General Labor (Crew of 4) [165 h]; General Labor (crew of 4) [165 h] | CONS | 2585 | VB |  |  |
| 8250VB1260 |  | Backfill from -12.5 to -10.5 mPD (Area on North Side of VB) | 2.15d | 2013-01-31 A | 2013-02-02 A | 8250VB1240 | 100% |  |  | General Labor (Crew of 4) [120 h]; General Labor (crew of 4) [120 h] | CONS | 2585 | VB |  |  |
| 8250VB1300 |  | Backfill from -10.5 to -8.0 mPD (Area on North Side of VB) | 2.15d | 2013-02-09 A | 2013-02-15 A | 8250VB1280 | 100% |  |  | General Labor (Crew of 4) [120 h]; General Labor (crew of 4) [120 h] | CONS | 2585 | VB |  |  |
| 8250VB1320 |  | Remove L3 Struts at -7.0 mPD | 4d | 2013-02-15 A | 2013-02-20 A | 8250VB1300 | 100% |  |  | General Labor (Crew of 4) [220 h]; Strut Skilled labors (Welders & Fitters) (crew of 4) [220 h]; General Labor (crew of 4) [220 h]; Skilled Scaffolder (crew of 6) [330 h] | CONS | 2585 | VB |  |  |
| 8250VB1400 |  | Remove L2 Struts at -2.0 mPD | 6d | 2013-04-02 A | 2013-04-08 A | 8250VB1380 | 100% | 2013-03-07 | 2013-03-13 | General Labor (Crew of 4) [300 h]; Strut Skilled labors (Welders & Fitters) (crew of 4) [300 h]; General Labor (crew of 4) [300 h]; Skilled Scaffolder (crew of 6) [450 h] | CONS | 2585 | VB |  |  |
| 8250VB1380 |  | Backfill from -8.0 to -3.0 mPD (Area on North Side of VB) | 8d | 2013-09-28 A | 2013-11-23 A | 8250VB1360 | 100% | 2013-10-02 | 2013-10-10 | General Labor (Crew of 4) [400 h]; General Labor (crew of 4) [400 h]; Drilling Rig [80 h]; Dump Truck [80 h]; Crawler Crane [80 h] | CONS | 2585 | VB |  |  |
| 8250VB1480 |  | Remove L1 Struts at +3.0 mPD | 6d | 2013-11-11 A | 2013-11-15 A | 8250VB1460 | 100% | 2013-10-19 | 2013-10-25 | General Labor (Crew of 4) [300 h]; Strut Skilled labors (Welders & Fitters) (crew of 4) [300 h]; General Labor (crew of 4) [300 h]; Skilled Scaffolder (crew of 6) [450 h] | CONS | 2585 | VB |  |  |
| 8250VB1460 |  | Backfill from -3.0 to +2.0 mPD (Area on North Side of VB) | 6d | 2013-11-25 A | 2013-12-16 A | 8250VB1440, 8250VB1420 | 100% | 2013-10-11 | 2013-10-18 | General Labor (Crew of 4) [300 h]; General Labor (crew of 4) [300 h]; Drilling Rig [60 h]; Crawler Crane [60 h]; Dump Truck [60 h] | CONS | 2585 | VB |  |  |
| 8250VB1580 |  | Backfill from +2.0 to +5.0 mPD (Area on North Side of VB) | 6d | 2013-12-17 A | 2014-02-21 A | 8250VB1560 | 100% | 2013-10-26 | 2013-11-01 | General Labor (Crew of 4) [300 h]; General Labor (crew of 4) [300 h] | CONS | 2585 | VB |  |  |
| 8250VB1940 |  | Backfill to -15.0 mPD (Area on South Side of Ventilation Building) | 7d | 2016-05-18 A | 2016-05-31 A | 8250VB1920, 8250VB1900 | 100% | 2016-06-30 | 2016-07-08 | Backfilling for South Elevation [986 m3]; General Labor (Crew of 4) [350 h]; General Labor (crew of 4) [350 h]; Drilling Rig [70 h]; Dump Truck [70 h]; Crawler Crane [70 h] | CONS | 2585 | VB | H | CP2 |
| 8250VB1900 |  | Remove L5 Struts at -16.0 mPD (those on South Side of Ventilation Building) | 10d | 2016-05-23 A | 2016-05-31 A | 8250IC10015, 8250IC10025, 8250CC7420, 8250CC7560 | 100% | 2016-11-19 | 2016-11-30 | General Labor (Crew of 4) [500 h]; Strut Skilled labors (Welders & Fitters) (crew of 4) [500 h]; General Labor (crew of 4) [500 h]; Skilled Scaffolder (crew of 6) [750 h]; Dump Truck [100 h]; Crawler Crane [100 h]; Welding Machine [100 h] | CONS | 2585 | VB | H | CP2 |
| 8250VB1960 |  | Remove L4a Struts at -14.0 mPD (those on South Side of Ventilation Building) | 10d | 2016-06-01 A | 2016-06-10 A | 8250VB1940 | 100% | 2016-12-09 | 2016-12-20 | Skilled Scaffolder (crew of 6) [750 h]; General Labor (Crew of 4) [500 h]; Strut Skilled labors (Welders & Fitters) (crew of 4) [500 h]; Dump Truck [100 h]; Crawler Crane [100 h]; Welding Machine [100 h]; General Labor (crew of 4) [500 h] | CONS | 2585 | VB | H | CP2 |
| 8250VB2000 |  | Backfill from -15.0 to -12.5 mPD (Area on South Side of Ventilation Building) | 7d | 2016-06-11 A | 2016-06-14 A | 8250VB1980, 8250VB1960 | 100% | 2016-07-21 | 2016-07-28 | Backfilling for South Elevation [2465 m3]; General Labor (Crew of 4) [350 h]; General Labor (crew of 4) [350 h]; Drilling Rig [70 h]; Dump Truck [70 h]; Crawler Crane [70 h] | CONS | 2585 | VB | H | CP2 |
| 8250VB2020 |  | Remove L4 Struts at -11.5 mPD (those on South Side of Ventilation Building) | 10d | 2016-06-15 A | 2016-06-21 A | 8250VB2000 | 100% | 2016-12-31 | 2017-01-12 | General Labor (Crew of 4) [500 h]; Strut Skilled labors (Welders & Fitters) (crew of 4) [500 h]; General Labor (crew of 4) [500 h]; Skilled Scaffolder (crew of 6) [750 h]; Dump Truck [100 h]; Welding Machine [100 h]; Crawler Crane [100 h] | CONS | 2585 | VB | H | CP2 |
| 8250VB2060 |  | Backfill from -12.5 to -10.5 mPD (Area on South Side of Ventilation Building) | 7d | 2016-06-22 A | 2016-06-30 A | 8250VB2020, 8250VB2040 | 100% | 2016-08-12 | 2016-08-19 | General Labor (Crew of 4) [350 h]; General Labor (crew of 4) [350 h]; Drilling Rig [70 h]; Dump Truck [70 h]; Crawler Crane [70 h]; Backfilling for South Elevation [2465 m3] | CONS | 2585 | VB | H | CP2 |
| 8250VB2080 |  | Remove L3a Struts at -9.5 mPD (those on South Side of Ventilation Building) | 10d | 2016-07-01 A | 2016-07-07 A | 8250VB2060 | 100% | 2016-09-17 | 2016-09-28 | General Labor (Crew of 4) [500 h]; Strut Skilled labors (Welders & Fitters) (crew of 4) [500 h]; General Labor (crew of 4) [500 h]; Skilled Scaffolder (crew of 6) [750 h]; Dump Truck [100 h]; Crawler Crane [100 h]; Welding Machine [100 h] | CONS | 2585 | VB | H | CP2 |
| 8250VB2120 |  | Backfill from -10.5 to -8.0 mPD (Area on South Side of Ventilation Building) | 7d | 2016-07-08 A | 2016-07-29 A | 8250VB2080, 8250VB2100 | 100% | 2016-09-01 | 2016-09-08 | Backfilling for South Elevation [2465 m3]; General Labor (Crew of 4) [350 h]; General Labor (crew of 4) [350 h]; Drilling Rig [70 h]; Dump Truck [70 h]; Crawler Crane [70 h] | CONS | 2585 | VB | H | CP2 |
| 8250VB2140 |  | Remove L3 Struts at -7.0 mPD (those on South Side of Ventilation Building) | 10d | 2016-07-30 A | 2016-08-23 A | 8250VB2120 | 100% | 2016-09-09 | 2016-09-21 | General Labor (Crew of 4) [500 h]; Strut Skilled labors (Welders & Fitters) (crew of 4) [500 h]; General Labor (crew of 4) [500 h]; Skilled Scaffolder (crew of 6) [750 h]; Dump Truck [100 h]; Crawler Crane [100 h]; Welding Machine [100 h] | CONS | 2585 | VB | H | CP2 |
| 8250VB2180 |  | Backfill from -8.0 to -3.0 mPD (Area on South Side of Ventilation Building) | 7d | 2016-08-23 A | 2016-08-30 A | 8250VB2140, 8250VB2160 | 100% | 2016-09-30 | 2016-10-08 | Backfilling for South Elevation [4930 m3]; General Labor (Crew of 4) [350 h]; General Labor (crew of 4) [350 h]; Drilling Rig [70 h]; Dump Truck [70 h]; Crawler Crane [70 h] | CONS | 2585 | VB | H | CP2 |
| 8250VB2200 |  | Remove L2 Struts at -2.0 mPD | 7d | 2016-08-31 A | 2016-09-08 A | 8250VB2180 | 100% | 2016-10-11 | 2016-10-18 | General Labor (Crew of 4) [350 h]; Strut Skilled labors (Welders & Fitters) (crew of 4) [350 h]; General Labor (crew of 4) [350 h]; Skilled Scaffolder (crew of 6) [525 h]; Dump Truck [70 h]; Crawler Crane [70 h]; Welding Machine [70 h] | CONS | 2585 | VB | H | CP2 |
| 8250VB2240 |  | Backfill from -3.0 to +2.0 mPD (Area on South Side of Ventilation Building) | 7d | 2016-09-09 A | 2016-09-16 A | 8250VB2200, 8250VB2220 | 100% | 2016-10-19 | 2016-10-26 | Backfilling for South Elevation [2958 m3]; Crawler Crane [70 h]; General Labor (Crew of 4) [350 h]; General Labor (crew of 4) [350 h]; Drilling Rig [70 h]; Dump Truck [70 h] | CONS | 2585 | VB | H | CP2 |
| 8250VB2260 |  | Remove L1 Struts at +3.0 mPD | 7d | 2016-09-17 A | 2016-09-23 A | 8250VB2240 | 100% | 2016-10-27 | 2016-11-03 | General Labor (Crew of 4) [350 h]; Strut Skilled labors (Welders & Fitters) (crew of 4) [350 h]; General Labor (crew of 4) [350 h]; Skilled Scaffolder (crew of 6) [525 h]; Dump Truck [70 h]; Crawler Crane [70 h]; Welding Machine [70 h] | CONS | 2585 | VB | H | CP2 |
| 8250VB2300 |  | Backfill from +2.0 to +5.0 mPD (Area on South Side of Ventilation Building) | 6d | 2016-09-24 A | 2016-10-15 A | 8250VB2280, 8250VB2260 | 100% | 2016-11-04 | 2016-11-10 | Backfilling for South Elevation [2958 m3]; General Labor (Crew of 4) [300 h]; General Labor (crew of 4) [300 h]; Drilling Rig [60 h]; Dump Truck [60 h]; Crawler Crane [60 h] | CONS | 2585 | VB | H | CP2 |

| ID | WBS | Activity | Type | Duration | Start | Finish | Predecessors | Complete | Planned start | Planned finish | Calendar | Resources | 825 Phase | 825 Location | 825 Sub-location |
| --- | --- | --- | --- | --- | --- | --- | --- | --- | --- | --- | --- | --- | --- | --- | --- |
|  | 2 | **STRUCTURAL WORKS** |  |  | 2012-11-09 | 2013-12-18 |  |  |  |  |  |  |  |  |  |
| 8250VB1020 |  | Ventilation Building - Construct Walls & Columns from AT to -14.5 mPD (including Overtrack Air Ducts) |  | 7d | 2012-11-09 A | 2013-01-07 A | 8250VB1000 | 100% | 2012-12-10 | 2012-12-17 |  | General Labor (Crew of 4) [385 h]; Carpenter [385 h]; Concretors [385 h]; Steel & Rebar skilled worker (crew of 4) [385 h]; General Labor (crew of 4) [385 h]; Skilled Scaffolder (crew of 6) [577.5 h] | CONS | 2585 | VB |
| 8250VB1140 |  | Ventilation Building - Construct Walls & Columns from L3 to L2 |  | 8d | 2012-11-09 A | 2013-01-09 A | 8250VB1120 | 100% | 2012-12-22 | 2013-01-04 |  | General Labor (Crew of 4) [440 h]; Carpenter [440 h]; Concretors [440 h]; Steel & Rebar skilled worker (crew of 4) [440 h]; General Labor (crew of 4) [440 h]; Skilled Scaffolder (crew of 6) [660 h] | CONS | 2585 | VB |
| 8250VB1220 |  | Ventilation Building - Construct Walls, Columns & Slab from -12.0 mPD to L2 at Approx -9.9 mPD |  | 8d | 2012-12-17 A | 2013-01-20 A | 8250VB1200 | 100% | 2012-12-31 | 2013-01-09 |  | General Labor (Crew of 4) [440 h]; Carpenter [440 h]; Concretors [440 h]; Steel & Rebar skilled worker (crew of 4) [440 h]; General Labor (crew of 4) [440 h]; Skilled Scaffolder (crew of 6) [660 h] | CONS | 2585 | VB |
| 8250VB1980 |  | Ventilation Building Walls & Columns to -12.0 mPD | milestone | 0d | 2013-01-08 A | 2013-01-08 A | 8250VB1140 FF | 100% | 2013-01-31 | 2013-01-31 | 825_7-day w/o holidays |  | CONS | 2585 | VB |
| 8250VB1920 |  | Ventilation Building Walls & Columns to -14.5 mPD | milestone | 0d | 2013-01-31 A | 2013-01-31 A | 8250VB1020 FF | 100% |  |  | 825_7-day w/o holidays |  | CONS | 2585 | VB |
| 8250VB1280 |  | Ventilation Building - Construct Walls & Columns from L2 at Approx -9.9 to -7.5 mPD |  | 6.4d | 2013-02-02 A | 2013-02-08 A | 8250VB1260 | 100% | 2013-02-02 | 2013-02-09 |  | General Labor (Crew of 4) [320 h]; Carpenter [320 h]; Concretors [320 h]; Steel & Rebar skilled worker (crew of 4) [320 h]; General Labor (crew of 4) [320 h]; Skilled Scaffolder (crew of 6) [480 h] | CONS | 2585 | VB |
| 8250VB2040 |  | Ventilation Building Walls, Columns & Slab to -10.0 mPD | milestone | 0d | 2013-02-02 A | 2013-02-02 A | 8250VB1220 FF+13.2d | 100% |  |  | 825_7-day w/o holidays |  | CONS | 2585 | VB |
| 8250VB1340 |  | Ventilation Building - Construct Walls, Columns & Slab from -7.5 mPD to L1 at Approx -2.4 mPD |  | 6.4d | 2013-02-20 A | 2013-02-28 A | 8250VB1320 | 100% | 2013-02-20 | 2013-02-27 |  | General Labor (crew of 4) [320 h]; Steel & Rebar skilled worker (crew of 4) [320 h]; Skilled Scaffolder (crew of 6) [480 h]; General Labor (Crew of 4) [320 h]; Carpenter [320 h]; Concretors [320 h] | CONS | 2585 | VB |
| 8250VB2100 |  | Ventilation Building Walls & Columns to -7.5 mPD | milestone | 0d | 2013-02-26 A | 2013-02-26 A | 8250VB1280 FF+13.2d | 100% | 2013-02-16 | 2013-02-16 | 825_7-day w/o holidays |  | CONS | 2585 | VB |
| 8250VB2160 |  | Ventilation Building Walls, Columns & Slab to L1 at Approx -2.4 mPD | milestone | 0d | 2013-04-07 A | 2013-04-07 A | 8250VB1340 FF+22d | 100% | 2013-03-22 | 2013-03-22 | 825_7-day w/o holidays |  | CONS | 2585 | VB |
| 8250VB1420 |  | Ventilation Building - Construct Walls & Columns from L1 at Approx -2.4 mPD to +2.5 mPD |  | 14d | 2013-04-25 A | 2013-05-31 A | 8250VB1400 | 100% | 2013-03-12 | 2013-03-27 |  | Skilled Scaffolder (crew of 6) [1050 h]; General Labor (Crew of 4) [700 h]; Carpenter [700 h]; Concretors [700 h]; Steel & Rebar skilled worker (crew of 4) [700 h]; General Labor (crew of 4) [700 h]; Drilling Rig [140 h]; Dump Truck [140 h]; Crawler Crane [140 h]; Concrete Pump [140 h]; Grouting Machine [140 h]; Welding Machine [140 h] | CONS | 2585 | VB |
| 8250VB2220 |  | Ventilation Building Walls, Columns & Slab to +2.5 mPD | milestone | 0d | 2013-05-10 A | 2013-05-10 A | 8250VB1420 FF+24.2d | 100% | 2013-04-22 | 2013-04-22 | 825_7-day w/o holidays |  | CONS | 2585 | VB |
| 8250VB1540 |  | Ventilation Building - Walls, Columns & Slab from +2.5 mPD to G/F (including Mass Concrete Fill from +5.905 mPD) |  | 10d | 2013-06-01 A | 2013-08-23 A | 8250VB1480 | 100% | 2013-04-05 | 2013-04-17 |  | Skilled Scaffolder (crew of 6) [750 h]; General Labor (Crew of 4) [500 h]; Carpenter [500 h]; Concretors [500 h]; Steel & Rebar skilled worker (crew of 4) [500 h]; General Labor (crew of 4) [500 h]; Drilling Rig [100 h]; Dump Truck [100 h]; Crawler Crane [100 h]; Concrete Pump [100 h]; Grouting Machine [100 h]; Welding Machine [100 h] | CONS | 2585 | VB |
| 8250VB2280 |  | Ventilation Building Walls, Columns & Slab to G/F | milestone | 0d | 2013-08-03 A | 2013-08-03 A | 8250VB1540 FF+40.7d | 100% | 2013-05-29 | 2013-05-29 | 825_7-day w/o holidays |  | CONS | 2585 | VB |
| 8250VB1600 |  | Ventilation Building - Walls & Columns to U1 (Lower Roof) |  | 11d | 2013-08-17 A | 2013-10-24 A | 8250VB1580, 8250VB1540 | 100% | 2013-04-18 | 2013-05-02 |  | Carpenter [550 h]; Concretors [550 h]; Steel & Rebar skilled worker (crew of 4) [550 h]; General Labor (crew of 4) [550 h]; Skilled Scaffolder (crew of 6) [825 h]; General Labor (Crew of 4) [550 h]; Drilling Rig [110 h]; Dump Truck [110 h]; Crawler Crane [110 h]; Concrete Pump [110 h]; Grouting Machine [110 h]; Welding Machine [110 h] | CONS | 2585 | VB |
| 8250VB1620 |  | Ventilation Building - U1 (Lower Roof) Slab |  | 10d | 2013-08-22 A | 2013-10-24 A | 8250VB1600 | 100% | 2013-04-27 | 2013-05-10 |  | Skilled Scaffolder (crew of 6) [750 h]; General Labor (Crew of 4) [500 h]; Carpenter [500 h]; Concretors [500 h]; Steel & Rebar skilled worker (crew of 4) [500 h]; General Labor (crew of 4) [500 h]; Drilling Rig [100 h]; Dump Truck [100 h]; Crawler Crane [100 h]; Concrete Pump [100 h]; Grouting Machine [100 h]; Welding Machine [100 h] | CONS | 2585 | VB |
| 8250VB1560 |  | Ventilation Building Walls, Columns & Slab to G/F at 7.2 mPD | milestone | 0d | 2013-08-24 A | 2013-08-24 A | 8250VB1540 FF | 100% | 2013-04-13 | 2013-04-13 | 825_7-day w/o holidays |  | CONS | 2585 | VB |
| 8250VB1640 |  | Ventilation Building - Walls & Columns to U2 (Roof) |  | 10d | 2013-10-17 A | 2013-11-30 A | 8250VB1380 FS-10d | 100% | 2013-10-02 | 2013-10-12 |  | Skilled Scaffolder (crew of 6) [750 h]; General Labor (crew of 4) [500 h]; General Labor (Crew of 4) [500 h]; Carpenter [500 h]; Concretors [500 h]; Steel & Rebar skilled worker (crew of 4) [500 h]; Drilling Rig [100 h]; Dump Truck [100 h]; Crawler Crane [100 h]; Concrete Pump [100 h]; Grouting Machine [100 h]; Welding Machine [100 h] | CONS | 2585 | VB |
| 8250VB1660 |  | Ventilation Building - U2 (Roof) Slab |  | 10d | 2013-10-17 A | 2013-12-18 A | 8250VB1640 FS-10d, 8250VB1620 FF | 100% | 2013-10-02 | 2013-10-12 |  | Skilled Scaffolder (crew of 6) [750 h]; General Labor (Crew of 4) [500 h]; Carpenter [500 h]; Concretors [500 h]; Steel & Rebar skilled worker (crew of 4) [500 h]; General Labor (crew of 4) [500 h]; Dump Truck [100 h]; Crawler Crane [100 h]; Concrete Pump [100 h]; Grouting Machine [100 h]; Welding Machine [100 h]; Drilling Rig [100 h] | CONS | 2585 | VB |
| 8250VB1680 |  | Ventilation Building - Plinths & Parapet Walls on U2 (Roof) |  | 10d | 2013-10-17 A | 2013-12-18 A | 8250VB1660 FS-10d | 100% | 2013-10-02 | 2013-10-12 |  | Skilled Scaffolder (crew of 6) [750 h]; General Labor (Crew of 4) [500 h]; Carpenter [500 h]; Concretors [500 h]; Steel & Rebar skilled worker (crew of 4) [500 h]; General Labor (crew of 4) [500 h]; Drilling Rig [100 h]; Dump Truck [100 h]; Crawler Crane [100 h]; Concrete Pump [100 h]; Grouting Machine [100 h]; Welding Machine [100 h] | CONS | 2585 | VB |
|  | 3 | **ABWF WORKS** |  |  | 2013-05-20 | 2015-07-03 |  |  |  |  |  |  |  |  |  |
| 8250VB1702 |  | ABWF Works to Degree 1 Completion including Blockwork, SEM Openings, Staircase, Lift Shafts & Lift Pits - Phase 1 |  | 114d | 2013-05-20 A | 2013-07-31 A | 8250VB1420, 8250BS1420 FF | 100% | 2013-03-23 | 2013-08-10 |  |  | CONS | 2585 | VB |
| 8250VB1704 |  | ABWF Works to Degree 1 Completion including Blockwork, SEM Openings, Staircase, Lift Shafts & Lift Pits |  | 10d | 2013-08-01 A | 2014-01-31 A | 8250VB1380 SS | 100% | 2013-10-02 | 2013-10-12 |  |  | CONS | 2585 | VB |
| 8250VB1722 |  | ABWF Works to Degree 2 Completion Including Temp Doors, Temp Locks & Minor Metal Works - Phase 1 |  | 50d | 2013-10-14 A | 2014-05-31 A | 8250VB1704 | 100% | 2013-10-15 | 2013-12-11 |  |  | CONS | 2585 | VB |
| 8250VB1800 |  | 855 to Carry out Building Services Works as required in PS App M |  | 33d | 2014-02-07 A | 2014-06-30 A | 8250KD4B01 | 100% | 2014-01-13 | 2014-02-21 |  |  | CONS | 2585 | VB |
| 8250VB1724 |  | ABWF Works to Degree 2 Completion Including Temp Doors, Temp Locks & Minor Metal Works - - Phase 2 |  | 50d | 2014-06-01 A | 2015-02-28 A | 8250VB1722 | 100% | 2014-12-31 | 2015-03-03 |  |  | CONS | 2585 | VB |
| 8250VB1760 |  | ABWF Works to Degree 3 Completion including Permanent Doors with Permanent Locks, all Service Penetrations Sealed |  | 27d | 2014-12-31 A | 2015-04-30 A | 8250VB1724 SS | 100% | 2014-12-31 | 2015-01-31 |  | General Labor (crew of 4) [1350 h]; General Labor (Crew of 4) [1350 h]; Carpenter [1350 h]; Concretors [1350 h]; Electrician [675 h]; Steel & Rebar skilled worker (crew of 4) [1350 h]; Pipes and Piping Skilled labors (crew of 2) [675 h]; Skilled Scaffolder (crew of 6) [2025 h]; Concrete Pump [270 h]; Welding Machine [270 h]; Grouting Machine [270 h]; Generator [270 h]; Crawler Crane [270 h]; Dump Truck [270 h] | CONS | 2585 | VB |
| 8250VB1780 |  | Builder's Works to Transformer Rooms as required in PS App M (Assumed) |  | 50d | 2015-05-02 A | 2015-07-02 A | 8250VB1760, 8250VB1660, 8250VB1724 | 100% | 2015-10-31 | 2015-12-30 |  | Skilled Scaffolder (crew of 6) [3750 h]; General Labor (Crew of 4) [2500 h]; Carpenter [2500 h]; Concretors [2500 h]; Steel & Rebar skilled worker (crew of 4) [2500 h]; General Labor (crew of 4) [2500 h] | CONS | 2585 | VB |
| 8250VB1820 |  | Transformer Rooms ready for CLP Access | milestone | 0d | 2015-07-03 A | 2015-07-03 A | 8250VB1780, 8250VB1724, 8250VB1800, 8250KD4B01 | 100% | 2015-10-31 | 2015-10-31 | 825_7-day w/o holidays |  | CONS | 2585 | VB |

Notes:
- 8250VB1702: Anticipated Problems: 21 Mar 2013 - Old Predecessor was / 8250VB1680 FS+15d

| ID | WBS | Activity | Type | Duration | Start | Finish | Predecessors | Complete | Planned start | Planned finish | Constraint | Calendar | Resources | 825 Phase | 825 Location | 825 Sub-location | Critical Path 1 and 2 | DRP Rev5 Filter |
| --- | --- | --- | --- | --- | --- | --- | --- | --- | --- | --- | --- | --- | --- | --- | --- | --- | --- | --- |
|  | 4 | **VB EXTERNAL WORKS** |  |  |  |  |  |  |  |  |  |  |  |  |  |  |  |  |
|  | 2 | **TEMPORARY ACCESS SHAFT FOR 826 (BAY 1) AND 830 (BAY 7)** |  |  | 2012-12-12 | 2016-08-12 |  |  |  |  |  |  |  |  |  |  |  |  |
| 8250CC10130 |  | 826 - Provide a 9m x 18m Temporary Opening and Backfilling around the Opening |  | 30d | 2012-12-12 A | 2013-02-26 A | 8250CC1040 | 100% | 2014-10-03 | 2014-11-06 |  |  |  | CONS | 2585 | AS |  |  |
| 8250VB1160 |  | Temporary Access Shaft - construct to from -15.5 to -12.0 mPD |  | 6d | 2012-12-12 A | 2013-01-08 A | 8250VB1140 | 100% | 2013-01-31 | 2013-02-06 |  |  | General Labor (Crew of 4) [330 h]; Carpenter [330 h]; Concretors [330 h]; Steel & Rebar skilled worker (crew of 4) [330 h]; General Labor (crew of 4) [330 h]; Skilled Scaffolder (crew of 6) [495 h] | CONS | 2585 | AS |  |  |
| 8250VB1040 |  | Temp Access Shaft - Construct to -15.5 mPD |  | 6d | 2012-12-31 A | 2013-01-12 A | 8250VB1000 | 100% | 2013-01-31 | 2013-02-06 |  |  | General Labor (Crew of 4) [330 h]; Carpenter [330 h]; Concretors [330 h]; Steel & Rebar skilled worker (crew of 4) [330 h]; General Labor (crew of 4) [330 h]; Skilled Scaffolder (crew of 6) [495 h] | CONS | 2585 | AS |  |  |
| 8250VB1240 |  | Temp Access Shaft - Construct to from -12.0 to -7.5 mPD |  | 6d | 2013-01-20 A | 2013-01-28 A | 8250VB1220 | 100% | 2013-01-31 | 2013-02-06 |  |  | General Labor (Crew of 4) [330 h]; Carpenter [330 h]; Concretors [330 h]; Steel & Rebar skilled worker (crew of 4) [330 h]; General Labor (crew of 4) [330 h]; Skilled Scaffolder (crew of 6) [495 h] | CONS | 2585 | AS |  |  |
| 8250VB1360 |  | Temp Access Shaft - Construct to from -7.5 to -2.5 mPD |  | 6d | 2013-01-29 A | 2013-02-17 A | 8250VB1340 | 100% | 2013-02-27 | 2013-03-05 |  |  | Skilled Scaffolder (crew of 6) [495 h]; General Labor (Crew of 4) [330 h]; Carpenter [330 h]; Concretors [330 h]; Steel & Rebar skilled worker (crew of 4) [330 h]; General Labor (crew of 4) [330 h] | CONS | 2585 | AS |  |  |
| 8250VB1440 |  | Temp Access Shaft - Construct to from -2.5 to +2.5 mPD |  | 6d | 2013-02-14 A | 2013-02-18 A | 8250VB1420 | 100% | 2013-03-23 | 2013-04-02 |  |  | Skilled Scaffolder (crew of 6) [495 h]; General Labor (Crew of 4) [330 h]; Carpenter [330 h]; Steel & Rebar skilled worker (crew of 4) [330 h]; Concretors [330 h]; General Labor (crew of 4) [330 h] | CONS | 2585 | AS |  |  |
| 8250VB1500 |  | Temp Access Shaft - Construct from +2.5 to 5.5 mPD |  | 8d | 2013-02-19 A | 2013-02-26 A | 8250VB1480 | 100% | 2013-04-03 | 2013-04-13 |  |  | Skilled Scaffolder (crew of 6) [660 h]; General Labor (Crew of 4) [440 h]; Carpenter [440 h]; Concretors [440 h]; Steel & Rebar skilled worker (crew of 4) [440 h]; General Labor (crew of 4) [440 h] | CONS | 2585 | AS |  |  |
| 8250VB1520 |  | Temp Access Shaft Available to 826 TMB Retrieval | milestone | 0d | 2013-02-27 A | 2013-02-27 A | 8250VB1500 | 100% | 2013-04-05 | 2013-04-05 |  | 825_7-day w/o holidays |  | CONS | 2585 | AS |  |  |
| 8250CC10145 |  | Design and Method of Statement Submission & Approval for RC Pre-Cast Cover Panels |  | 30d | 2014-03-01 A | 2014-03-07 A | 8250CC7360 | 100% | 2015-10-31 | 2015-12-04 |  |  |  |  |  |  |  |  |
| 8250CC10150 |  | Pre-Cast Construction for 5m x 7m RC Cover Block-Out - 2 Nos.(NB & SB) |  | 25d | 2016-03-01 A | 2016-03-30 A | 8250CC10145 | 100% | 2016-06-30 | 2016-07-29 |  |  |  |  |  |  |  |  |
| 8250IC10015 |  | Anticipated Closure of 5m x 7m Opening - DT C&C Tunnel | milestone | 0d | 2016-03-18 A | 2016-03-18 A | 8250CC10200, 8250PM060 | 100% | 2016-07-29 | 2016-07-29 |  | 825_7-day w/o holidays |  |  |  |  |  |  |
| 8250CC10205 |  | Permanent Close Out & Sealing of 5m x 7m Temporary Block-Out Opening for UT/NB along Bay 7 |  | 14d | 2016-04-01 A | 2016-04-11 A | 8250CC11529, 8250CC11529-100, 8250PM055, 8250PM057 | 100% | 2016-06-30 | 2016-07-13 |  | 825_7-day w/o holidays |  |  |  |  |  |  |
| 8250IC10025 |  | Anticipated Closure of 5m x 7m Opening - UT C&C Tunnel | milestone | 0d | 2016-04-11 A | 2016-04-11 A | 8250CC10205, 8250PM065 | 100% | 2016-07-13 | 2016-07-13 |  | 825_7-day w/o holidays |  |  |  |  | CP2 |  |
| 8250CC10200 |  | Permanent Close Out & Sealing of 5m x 7m Temporary Block-Out Opening for DT/SB along Bay 7 |  | 14d | 2016-07-30 A | 2016-08-12 A | 8250CC11528, 8250CC10150, 8250CC11528-100, 8250PM050 | 100% |  |  |  | 825_7-day w/o holidays |  | CONS | 2585 | AS |  | H |
|  | 9 | **BARGING POINT AT SIU LAM** |  |  | 2010-02-01 | 2010-06-08 |  |  |  |  |  |  |  |  |  |  |  |  |
| 8250BP1000 |  | Access to Works Area 1.15 | milestone | 0d | 2010-02-01 A | 2010-02-01 A | 8250AC160 SS | 100% |  |  |  | 825_7-day w/o holidays |  | CONS | 3130 |  |  |  |
| 8250BP1020 |  | Pre-construction Hydrographic Survey |  | 6.6d | 2010-02-01 A | 2010-02-06 A | 8250BP1000 | 100% | 2010-02-01 | 2010-02-08 |  |  | Boat [5 h] | CONS | 3130 |  |  |  |
| 8250BP1040 |  | Erect Hoarding and Maintain Site Security |  | 24d | 2010-02-08 A | 2010-03-10 A | 8250BP1020 | 100% |  |  |  |  | Lorry Crane [264 h]; Generator [264 h]; Welding Machine [264 h]; Concrete [5 m3] | CONS | 3130 |  |  |  |
| 8250BP1060 |  | Install Wheel Washing Facility, Loading Ramps, Moorings & Cranage for Explosive Loading Point |  | 36d | 2010-03-11 A | 2010-04-26 A | 8250BP1040, 8250SM4900 | 100% |  |  |  |  | Lorry Crane [396 h]; Generator [396 h]; Drilling Rig [11 h]; Welding Machine [396 h]; Concrete [20 m3] | CONS | 3130 |  |  |  |
| 8250BP1080 |  | Cranage, Berthing, Fencing, Access to EUP Completed & Ready for CEDD Mines Division | milestone | 0d | 2010-04-26 A | 2010-04-26 A | 8250BP1060 FF | 100% |  |  |  | 825_7-day w/o holidays |  | CONS | 3130 |  |  |  |
| 8250BP1100 |  | Install Weighbridges |  | 26.4d | 2010-04-27 A | 2010-05-27 A | 8250BP1060 | 100% | 2010-04-27 | 2010-05-29 |  |  | Lorry Crane [264 h]; Generator [264 h]; Welding Machine [264 h] | CONS | 3130 |  |  |  |
| 8250BP1120 |  | Access to 823A Area | milestone | 0d | 2010-05-26 A | 2010-05-26 A | 8250BP1100 | 100% |  |  | start on or after 2010-05-26 | 825_7-day w/o holidays |  | CONS | 3130 |  |  |  |
| 8250BP1140 |  | Access Road for 823A |  | 13.2d | 2010-05-26 A | 2010-06-08 A | 8250BP1120 SS, 8250BP1100 FF | 100% | 2010-05-26 | 2010-06-10 |  |  |  | CONS | 3130 |  |  |  |

| ID | WBS | Activity | Duration | Start | Finish | Predecessors | Complete | Planned start | Planned finish | Calendar | Resources | DRP Rev5 Filter | 825 Phase | 825 Location | 825 Sub-location |
| --- | --- | --- | --- | --- | --- | --- | --- | --- | --- | --- | --- | --- | --- | --- | --- |
|  | 10 | **ADDITIONAL BACKFILL TO +7mPD & SURCHARGE TO +9.50mPD** |  | 2013-10-01 | 2017-06-30 |  |  |  |  |  |  |  |  |  |  |
|  | 1 | **ZONE 1 (AS INDICATED IN DRAWING 825/W/320/OAP/T04/821)** |  | 2014-08-25 | 2017-04-28 |  |  |  |  |  |  |  |  |  |  |
|  | 1 | **AREA 1.4A** |  | 2014-08-25 | 2015-02-14 |  |  |  |  |  |  |  |  |  |  |
| 8250BS2210 |  | Backfill Zone 1 Area 1.4A up to +7mPD | 25d | 2014-08-25 A | 2014-09-30 A | 8250CC10050 | 100% | 2014-12-31 | 2015-01-29 |  |  |  |  |  |  |
| 8250BS2225 |  | Surcharge Period for Zone 1 at Area 1.4A up to +9.5mPD (3 months) | 90d | 2014-10-01 A | 2015-01-31 A | 8250BS2210 | 100% | 2014-12-31 | 2015-03-30 | 825_7-day w/o holidays | Surcharging [6713.44 m3] |  |  |  |  |
| 8250BS2228 |  | Surcharge Removal for Zone 1 at Area 1.4A | 14d | 2015-02-02 A | 2015-02-14 A | 8250BS2225 | 100% | 2015-02-01 | 2015-02-14 | 825_7-day w/o holidays | Soil Disposal [539 m3] |  |  |  |  |
|  | 3 | **AREA 1.16** |  | 2016-06-15 | 2017-04-28 |  |  |  |  |  |  |  |  |  |  |
| 8250BS2255 |  | Reduce the Level up to 7mPD~4.5mPD (Part 1) | 14d | 2016-06-15 A | 2017-04-24 A | 8250CC11529 | 100% | 2016-06-30 | 2016-07-16 |  | Soil Disposal [140 m3] |  |  |  |  |
| 8250BS2255-100 |  | Reduce the Level up to 7mPD~4.5mPD (Part 2) | 16d | 2017-04-07 A | 2017-04-28 A | 8250BS2255 | 100% | 2017-05-19 | 2017-06-07 |  | Soil Disposal [160 m3] |  |  |  |  |
|  | 2 | **AREA 1.17** |  | 2014-08-25 | 2015-02-14 |  |  |  |  |  |  |  |  |  |  |
| 8250BS2230 |  | Backfill Zone 1 Area 1.17 up to +7mPD | 25d | 2014-08-25 A | 2014-09-30 A | 8250BS2210 SS | 100% | 2014-12-31 | 2015-01-29 |  |  |  |  |  |  |
| 8250BS2240 |  | Surcharge Period for Zone 1 at Area 1.17 up to +9.5mPD | 32d | 2014-12-31 A | 2015-01-31 A | 8250BS2230 | 100% |  |  | 825_7-day w/o holidays | Surcharging [2202 m3] |  |  |  |  |
| 8250BS2245 |  | Surcharge Removal | 14d | 2015-02-02 A | 2015-02-14 A | 8250BS2240 | 100% | 2015-02-01 | 2015-02-14 | 825_7-day w/o holidays | Soil Disposal [496 m3] |  |  |  |  |
|  | 4 | **AREA 1.21** |  | 2017-04-06 | 2017-04-27 |  |  |  |  |  |  |  |  |  |  |
| 8250BS2410 |  | Removal of Temporary Stock Pile Mould (Part 1) | 8d | 2017-04-06 A | 2017-04-19 A | 8250CC11529 | 100% | 2017-05-02 | 2017-05-11 |  |  |  |  |  |  |
| 8250BS2410-100 |  | Removal of Temporary Stock Pile Mould (Part 2) | 16d | 2017-04-20 A | 2017-04-27 A | 8250BS2410 | 100% | 2017-05-12 | 2017-05-31 |  |  |  |  |  |  |
|  | 2 | **ZONE 2 (AS INDICATED IN DRAWING 825/W/320/OAP/T04/821)** |  | 2015-01-05 | 2017-05-08 |  |  |  |  |  |  |  |  |  |  |
| 8250BS1250 |  | Access Road D Construction | 12d | 2015-01-05 A | 2015-01-24 A | 8250CC10080 | 100% | 2014-12-31 | 2015-01-14 |  |  |  |  |  |  |
| 8250BS1300 |  | Open Temp Access Road to Henderson's Site thru Backup Access Road C and Permanent Access Road to VB | 30d | 2015-01-12 A | 2015-02-28 A | 8250BS1250 | 100% | 2015-01-15 | 2015-02-18 |  |  | H | CONS | 3150 | ZN02 |
|  | 2 | **AREA 1.8** |  |  |  |  |  |  |  |  |  |  |  |  |  |
|  | 3 | **AREA 1.9** |  | 2015-01-19 | 2017-05-08 |  |  |  |  |  |  |  |  |  |  |
| 8250CC10490 |  | Prepare Surcharge | 4d | 2015-01-19 A | 2015-01-21 A | 8250NBDIS0510 FS-9d, 8250BS1300 | 100% | 2015-03-31 | 2015-04-03 | 825_7-day w/o holidays |  |  |  |  |  |
| 8250BS2555 |  | Surcharge Period for Zone 2 at Area 1.9 up to +9.5mPD | 91d | 2015-01-22 A | 2015-08-10 A | 8250CC10490 FS-1d | 100% | 2015-02-25 | 2015-05-26 | 825_7-day w/o holidays | Surcharging [2260 m3] |  |  |  |  |
| 8250CC10500 |  | Surcharge Removal (Part 1) | 4d | 2016-05-01 A | 2016-07-05 A | 8250BS2555 | 100% | 2016-06-30 | 2016-07-05 |  |  |  |  |  |  |
| 8250CC10500-100 |  | Surcharge Removal (Part 2) | 8d | 2016-07-02 A | 2017-05-08 A | 8250CC10500 | 100% | 2016-08-01 | 2016-08-09 |  | Soil Disposal [1020 m3] |  |  |  |  |

| ID | WBS | Activity | Type | Duration | Start | Finish | Predecessors | Complete | Planned start | Planned finish | Constraint | Calendar | Resources | 825 Phase | 825 Location | 825 Sub-location | Critical Path 3 |
| --- | --- | --- | --- | --- | --- | --- | --- | --- | --- | --- | --- | --- | --- | --- | --- | --- | --- |
|  | 3 | **ZONE 3 (AS INDICATED IN DRAWING 825/W/320/OAP/T04/821)** |  |  | 2014-04-01 | 2017-04-26 |  |  |  |  |  |  |  |  |  |  |  |
| 8250BS1590 |  | Handover Works Area 1.3, 1.4B and 1.6b to 826 at Existing Ground Level | milestone | 0d | 2014-04-01 A | 2014-04-01 A | 8250AC030 | 100% | 2014-09-30 | 2014-09-30 | finish on or after 2014-09-30 | 825_7-day w/o holidays |  | CONS | 3150 | ZN03 |  |
|  | 2 | **AREA 1.3 & AREA 1.4B** |  |  | 2016-11-01 | 2017-04-26 |  |  |  |  |  |  |  |  |  |  |  |
| 8250BS2260 |  | Backfill Zone 3 Area 1.3 & Area 1.4B up to +7mPD |  | 12d | 2016-11-01 A | 2016-12-08 A | 8250CC10480, 8250HO555 | 100% | 2017-01-20 | 2017-02-06 |  |  | Backfilling [22366 m3] |  |  |  |  |
| 8250BS2270 |  | Surcharge Period for Zone 3 at Area 1.3 & Area 1.4B up to +9.5mPD (3 months) |  | 92d | 2016-12-08 A | 2017-01-31 A | 8250BS2260 | 100% | 2017-02-22 | 2017-05-24 |  | 825_7-day w/o holidays | Surcharging [2849 m3] |  |  |  |  |
| 8250BS2275 |  | Surcharge Removal for Zone 3 at Area 1.3 & Area 1.4B |  | 12d | 2017-04-13 A | 2017-04-26 A | 8250BS2270 | 100% | 2017-05-02 | 2017-05-16 |  |  | Soil Disposal [552 m3] |  |  |  |  |
|  | 4 | **ZONE 4 (AS INDICATED IN DRAWING 825/W/320/OAP/T04/821)** |  |  | 2013-12-14 | 2014-12-31 |  |  |  |  |  |  |  |  |  |  |  |
| 8250BS1420 |  | Ventilation Building Structure Completes | milestone | 0d | 2013-12-14 A | 2013-12-14 A | 8250VB1680 FF | 100% | 2013-10-12 | 2013-10-12 |  | 825_7-day w/o holidays |  | CONS | 3150 | ZN04 |  |
| 8250BS1460 |  | TBM Tunnelling Completes and Facilities Cleared Out | milestone | 0d | 2014-12-31 A | 2014-12-31 A | 8250CC10080 | 100% |  |  |  | 825_7-day w/o holidays |  | CONS | 3150 | ZN04 |  |
|  | 5 | **ZONE 5 (AS INDICATED IN DRAWING 825/W/320/OAP/T04/821)** |  |  | 2016-10-03 | 2017-04-30 |  |  |  |  |  |  |  |  |  |  |  |
|  | 8 | **AREA 1.7** |  |  | 2016-10-03 | 2017-04-30 |  |  |  |  |  |  |  |  |  |  |  |
| 8250BS2110 |  | Putting Surcharge from +5.0mPD to +9.5mPD |  | 30d | 2016-10-03 A | 2016-10-13 A | 8250VB2300 | 100% | 2016-10-31 | 2016-12-03 |  |  |  |  |  |  |  |
| 8250BS2112 |  | Surcharge Period for Zone 5 at Area 1.7 up to +9.5mPD (Part 1) |  | 57d | 2016-10-13 A | 2016-11-30 A | 8250BS2110 | 100% | 2016-12-04 | 2017-01-29 |  | 825_7-day w/o holidays | Surcharging [5776.83 m3] |  |  |  |  |
| 8250BS2112-100 |  | Surcharge Period for Zone 5 at Area 1.7 up to +9.5mPD (Part 2) |  | 35d | 2016-10-13 A | 2016-11-30 A | 8250BS2112 | 100% | 2017-01-30 | 2017-03-05 |  | 825_7-day w/o holidays | Surcharging [3547.17 m3] |  |  |  |  |
| 8250BS2115 |  | Surcharge Removal for Zone 5 at Area 1.7 |  | 12d | 2017-03-15 A | 2017-03-31 A | 8250BS2112, 8250BS2112-100 | 100% | 2017-03-31 | 2017-04-18 |  |  | Soil Disposal [3159 m3] |  |  |  |  |
| 8250BS2510 |  | Backfill Zone 5 Area 1.7 up to +7mPD (Henderson's Permanent Road) (Part 1) |  | 28d | 2017-04-12 A | 2017-04-19 A | 8250BS2112, 8250BS2120 | 100% | 2017-04-30 | 2017-05-27 |  | 825_7-day w/o holidays | Backfilling [34154.4 m3] |  |  |  |  |
| 8250BS2120 |  | Release Parts of Works Areas 1.7 for Henderson to Construct their Permanent Access Road | milestone | 0d | 2017-04-13 A | 2017-04-13 A | 8250BS2112, 8250EW0260 | 100% | 2017-04-30 | 2017-04-30 |  | 825_7-day w/o holidays |  | CONS | 3150 | ZN02 |  |
| 8250BS2510-100 |  | Backfill Zone 5 Area 1.7 up to +7mPD (Henderson's Permanent Road) (Part 2) |  | 28d | 2017-04-20 A | 2017-04-26 A | 8250BS2510, 8250BS2112-100 | 100% | 2017-05-28 | 2017-06-24 |  | 825_7-day w/o holidays | Backfilling [34154.4 m3] |  |  |  |  |
| 8250BS2520 |  | Area 1.7 Road Diversion CP to Henderson's Permanent Area |  | 56d | 2017-04-27 A | 2017-04-30 A | 8250BS2510, 8250BS2510-100 FF+24d | 100% | 2017-05-28 | 2017-07-22 |  | 825_7-day w/o holidays |  |  |  |  |  |
|  | 6 | **ZONE 6 (AS INDICATED IN DRAWING 825/W/320/OAP/T04/821)** |  |  | 2013-10-01 | 2017-05-17 |  |  |  |  |  |  |  |  |  |  |  |
| 8250BS1800 |  | Handover Works Areas 1.5 and 1.6c to 826 at Existing Ground Level | milestone | 0d | 2013-10-01 A | 2013-10-01 A | 8250AC050 | 100% | 2014-09-30 | 2014-09-30 | finish on or after 2014-09-30 | 825_7-day w/o holidays |  | CONS | 3150 | ZN06 |  |
|  | 1 | **AREA 1.5** |  |  | 2016-10-03 | 2017-05-17 |  |  |  |  |  |  |  |  |  |  |  |
| 8250BS2280 |  | Backfill Zone 6 Area 1.5 up to +7mPD |  | 12d | 2016-10-03 A | 2016-10-20 A | 8250CC10480-100, 8250HO515 | 100% | 2017-01-04 | 2017-01-17 |  |  | Backfilling [15196 m3] |  |  |  | CP3 |
| 8250BS2290 |  | Surcharge Period for Zone 6 at Area 1.5 up to +9.5mPD |  | 92d | 2016-10-20 A | 2017-01-20 A | 8250BS2280 | 100% | 2017-01-18 | 2017-04-19 |  | 825_7-day w/o holidays | Surcharging [1979.02 m3] |  |  |  |  |
| 8250BS2295 |  | Surcharge Removal for Zone 6 at Area 1.5 |  | 12d | 2017-03-07 A | 2017-05-17 A | 8250BS2290 | 100% | 2017-05-31 | 2017-06-13 |  |  | Soil Disposal [655.5 m3] |  |  |  |  |

| ID | WBS | Activity | Type | Duration | Start | Finish | Predecessors | Complete | Planned start | Planned finish | Calendar | Resources | Critical Path 3 | Critical Path 1 and 2 |
| --- | --- | --- | --- | --- | --- | --- | --- | --- | --- | --- | --- | --- | --- | --- |
|  | 7 | **ZONE 7 (AS INDICATED IN DRAWING 825/W/320/OAP/T04/821)** |  |  | 2014-10-20 | 2017-06-30 |  |  |  |  |  |  |  |  |
|  | 1 | **AREA 1.6** |  |  | 2016-06-20 | 2017-06-30 |  |  |  |  |  |  |  |  |
| 8250BS2318 |  | Surcharge Period for Zone 7 at Area 1.6 up to +9.5mPD |  | 92d | 2016-06-20 A | 2016-09-20 A | 8250BS2315 | 100% | 2017-01-04 | 2017-04-05 | 825_7-day w/o holidays | Surcharging [2901 m3] |  |  |
| 8250BS2310 |  | Backfill Zone 7 Area 1.6 up to +7mPD |  | 6d | 2016-08-01 A | 2016-08-14 A | 8250BS2260 | 100% | 2016-12-06 | 2016-12-13 |  | Backfilling [11386 m3] |  |  |
| 8250BS2315 |  | Backfill Zone 7 Area 1.6 up to +7mPD ~ +9.50mPD |  | 6d | 2016-08-15 A | 2016-09-30 A | 8250BS2310 | 100% | 2016-12-13 | 2016-12-20 |  | Backfilling [11386 m3] |  |  |
| 8250BS2320 |  | Surcharge Removal for Zone 7 at Area 1.6 up to +9.5mPD |  | 8d | 2016-09-21 A | 2017-04-30 A | 8250BS2315, 8250BS2318 | 100% | 2017-04-06 | 2017-04-18 |  | Soil Disposal [655 m3] |  |  |
| 8250BS2323 |  | Handover of Area 1.6 | milestone | 0d | 2017-06-30 A | 2017-06-30 A | 8250BS2320 | 100% |  |  | 825_7-day w/o holidays |  |  |  |
|  | 2 | **AREA 1.8** |  |  | 2014-10-20 | 2015-01-31 |  |  |  |  |  |  |  |  |
| 8250BS2610 |  | Zone 7 Area 1.8 Spoil Pit Backfill up to +7mPD |  | 39d | 2014-10-20 A | 2014-11-30 A | 8250CC10070 | 100% | 2014-12-31 | 2015-02-14 |  |  |  |  |
| 8250BS2620 |  | Zone 7 Area 1.8 Spoil Pit Backfill up to +7mPD |  | 25d | 2014-10-20 A | 2014-11-30 A | 8250BS2610 | 100% | 2015-02-16 | 2015-03-19 |  |  |  |  |
| 8250BS2615 |  | Zone 7 Area 1.8 Access & Conveyor Area Backfill up to +7mPD |  | 75d | 2014-12-08 A | 2015-01-31 A | 8250BS2610 FS-25d, 8250BS2620 | 100% | 2015-01-17 | 2015-04-22 |  |  |  |  |
|  | 11 | **EXTERNAL WORKS** |  |  | 2014-08-01 | 2017-06-30 |  |  |  |  |  |  |  |  |
|  | 5 | **AREA 1.2** |  |  | 2015-03-17 | 2017-03-30 |  |  |  |  |  |  |  |  |
|  | 1 | **CONSTRUCTION OF TOE WALLS & ROAD DEVELOPMENT** |  |  | 2016-08-01 | 2017-01-31 |  |  |  |  |  |  |  |  |
| 8250EW0116 |  | Excavation, Base Preparation & Lean Concrete |  | 24d | 2016-08-01 A | 2016-08-23 A | 8250EW0260 | 100% | 2016-08-31 | 2016-09-28 |  | External Works - Labor [2160 h] |  |  |
| 8250EW0117 |  | Formworks, Rebar, Concreting & Curing |  | 10d | 2016-09-01 A | 2016-11-01 A | 8250EW0116 | 100% | 2016-09-30 | 2016-10-13 |  | Retaining Wall & Toe Wall [45 m3]; External Works - Labor [900 h]; External Works - Concreting [900 h]; External Works - Rebar [900 h]; External Works - Formworks [100 h] |  |  |
| 8250EW0118 |  | Dismantling & Backfilling Works |  | 15d | 2016-11-02 A | 2016-11-24 A | 8250EW0117 | 100% | 2017-03-20 | 2017-04-06 |  | External Works - Labor [1350 h] |  |  |
| 8250EW0120 |  | Drainage Works for Toe Walls |  | 12d | 2016-11-25 A | 2016-12-09 A | 8250EW0118 | 100% | 2017-04-07 | 2017-04-24 |  | External Works - Utilities Labor [1080 h] |  |  |
| 8250EW0122 |  | Road Formation & Base Preparation |  | 12d | 2016-12-10 A | 2016-12-22 A | 8250EW0120, 8250BS2280, 8250BS2260 | 100% | 2017-04-04 | 2017-04-21 |  | External Works - Utilities Labor [1080 h] | CP3 |  |
| 8250EW0124 |  | Lay Drainages, Gullies & RC Kerbs |  | 28d | 2016-12-23 A | 2017-01-12 A | 8250EW0122 | 100% | 2017-04-22 | 2017-05-26 |  | External Works - Utilities Labor [2520 h] | CP3 |  |
| 8250EW0126 |  | Backfill to Formation |  | 12d | 2017-01-13 A | 2017-01-23 A | 8250EW0124 | 100% | 2017-05-27 | 2017-06-10 |  |  | CP3 |  |
| 8250EW0127 |  | Lay Road Base |  | 6d | 2017-01-24 A | 2017-01-27 A | 8250EW0126 | 100% | 2017-06-12 | 2017-06-17 |  |  | CP3 |  |
| 8250EW0129 |  | Permanent Road Pavement Works |  | 5d | 2017-01-28 A | 2017-01-31 A | 8250EW0127 | 100% | 2017-06-19 | 2017-06-23 |  |  | CP3 |  |
|  | 2 | **UTILITIES & ROADWORK WITHIN SITE BOUNDARY** |  |  | 2015-03-17 | 2017-03-30 |  |  |  |  |  |  |  |  |
|  | 1 | **SM2.1 ~ SM2.5 (Approx. 50.774m)** |  |  | 2015-03-17 | 2017-01-31 |  |  |  |  |  |  |  |  |
| 825EW12740 |  | Preparation & Clearing |  | 4d | 2015-03-17 A | 2016-03-20 A | 825EW12730 | 100% | 2016-12-07 | 2016-12-10 |  | External Works - Labor [360 h] |  | CP2 |
| 825EW12730 |  | Implement TTMS |  | 2d | 2016-03-01 A | 2016-03-10 A | 8250VB2300, 825EW12450 | 100% | 2016-12-05 | 2016-12-06 |  | External Works - Labor [180 h] |  | CP2 |
| 825EW12750 |  | Breaking of Existing Concrete Pavement |  | 10d | 2016-03-21 A | 2016-03-31 A | 825EW12740, 825EW12470 | 100% | 2016-12-22 | 2017-01-05 |  | External Works - Labor [900 h]; External Works - Concreting [900 h] |  | CP2 |
| 825EW12760 |  | Excavation & Hauling |  | 6d | 2016-04-04 A | 2016-04-09 A | 825EW12750 | 100% | 2017-01-06 | 2017-01-12 |  | External Works - Labor [540 h] |  | CP2 |
| 825EW12770 |  | Existing Utilities Detection & Relocation |  | 6d | 2016-04-13 A | 2016-04-20 A | 825EW12760 | 100% | 2017-01-13 | 2017-01-19 |  | External Works - Labor [540 h] |  | CP2 |
| 825EW12780 |  | Take Down of Existing Kerbs and U-Channels |  | 6d | 2016-04-27 A | 2016-05-01 A | 825EW12770 | 100% | 2017-01-20 | 2017-01-26 |  | External Works - Labor [540 h] |  | CP2 |
| 825EW12790 |  | Road Formation & Base Preparation |  | 20d | 2016-05-02 A | 2016-05-25 A | 825EW12780, 825EW12510 | 100% | 2017-01-27 | 2017-02-22 |  | External Works - Labor [1800 h] |  | CP2 |
| 825EW12800 |  | Lay Storm Drain Pipes, Foul Water Pipes & FW Main Pipes |  | 24d | 2016-12-01 A | 2016-12-15 A | 825EW12790 | 100% | 2016-12-31 | 2017-02-01 |  | External Works - Utilities Labor [2160 h]; External Works - Labor [2160 h] |  | CP2 |
| 825EW12810 |  | Lay & Arrangment Utilities Drawpits/Ducts (CLP, Tel., Street Lights, etc.) |  | 24d | 2016-12-16 A | 2016-12-22 A | 825EW12790 | 100% | 2016-12-31 | 2017-02-01 |  | External Works - Utilities Labor [2160 h]; External Works - Labor [2160 h] |  |  |
| 825EW12820 |  | Install Gullies & RC Kerbs |  | 10d | 2016-12-23 A | 2016-12-30 A | 825EW12810 | 100% | 2017-02-02 | 2017-02-13 |  | External Works - Labor [900 h] |  |  |
| 825EW12830 |  | Lay Manholes |  | 4d | 2017-01-01 A | 2017-01-06 A | 825EW12820 | 100% | 2017-02-01 | 2017-02-04 |  | External Works - Labor [360 h] |  |  |
| 825EW12840 |  | Backfill to Formation |  | 10d | 2017-01-07 A | 2017-01-13 A | 825EW12830 | 100% | 2017-02-06 | 2017-02-16 |  | External Works - Labor [900 h] |  |  |
| 825EW12850 |  | Lay Road Base |  | 10d | 2017-01-09 A | 2017-01-20 A | 825EW12840 | 100% | 2017-02-17 | 2017-02-28 |  | Road Base @ 210mm Thickness [655 Sq m]; External Works - Labor [900 h] |  |  |
| 825EW12860 |  | Permanent Road Pavement Works |  | 10d | 2017-01-21 A | 2017-01-31 A | 825EW12850 | 100% | 2017-03-01 | 2017-03-11 |  | Road Pavement @ 105mm Thickness [1309 Sq m]; External Works - Labor [900 h]; External Works - Concreting [900 h]; External Works - Rebar [900 h]; External Works - Formworks [100 h] |  |  |

| ID | WBS | Activity | Duration | Start | Finish | Predecessors | Complete | Planned start | Planned finish | Resources | Critical Path 1 and 2 | Updated Progress Status |
| --- | --- | --- | --- | --- | --- | --- | --- | --- | --- | --- | --- | --- |
|  | 2 | **SM1.1,SM1.2,SM1.3,SM1.4,SM1.5,SM1.6,SM1.6A,SM1.7 & SM1.8** |  | 2016-04-06 | 2017-03-30 |  |  |  |  |  |  |  |
| 825EW12870 |  | Implement TTMS | 2d | 2016-04-06 A | 2016-04-08 A | 825EW12730 | 100% | 2016-12-05 | 2016-12-06 | External Works - Labor [180 h] |  |  |
| 825EW12880 |  | Preparation & Clearing | 2d | 2016-04-11 A | 2016-04-15 A | 825EW12870, 825EW12740 | 100% | 2016-12-07 | 2016-12-08 | External Works - Labor [180 h] |  |  |
| 825EW12890 |  | Road Formation & Base Preparation (Part 1) | 8d | 2016-05-02 A | 2016-05-25 A | 825EW12880, 825EW12790 | 100% | 2017-02-23 | 2017-03-03 | External Works - Labor [720 h] |  |  |
| 825EW12890-100 |  | Road Formation & Base Preparation (Part 2) | 6d | 2016-05-02 A | 2016-05-25 A | 825EW12890 | 100% | 2017-03-04 | 2017-03-10 |  |  |  |
| 825EW12900 |  | Lay Storm Drain Pipes, Foul Water Pipes & FW Main Pipes | 24d | 2016-12-01 A | 2016-12-26 A | 825EW12890-100 | 100% | 2016-12-31 | 2017-02-01 | External Works - Utilities Labor [2160 h]; External Works - Labor [2160 h] | CP2 |  |
| 825EW12910 |  | Lay & Arrangment Utilities Drawpits/Ducts (CLP, Tel., Street Lights, etc.) | 14d | 2016-12-26 A | 2017-01-10 A | 825EW12900 SS, 825EW12900 FF | 100% | 2017-02-13 | 2017-02-28 | External Works - Utilities Labor [1260 h]; External Works - Labor [1260 h] | CP2 |  |
| 825EW12920 |  | Water Meter Set-Up and Installation | 6d | 2017-01-11 A | 2017-01-18 A | 825EW12910 | 100% | 2017-03-01 | 2017-03-07 | External Works - Labor [540 h] | CP2 |  |
| 825EW12930 |  | Install Gullies & RC Kerbs | 6d | 2017-02-20 A | 2017-02-23 A | 825EW12920, 825EW12820 | 100% | 2017-03-08 | 2017-03-14 | External Works - Labor [540 h] |  |  |
| 825EW12940 |  | Lay Manholes | 4d | 2017-03-01 A | 2017-03-07 A | 825EW12930, 825EW12830 | 100% | 2017-03-31 | 2017-04-04 | External Works - Labor [360 h] |  |  |
| 825EW12950 |  | Backfill to Formation | 6d | 2017-03-09 A | 2017-03-17 A | 825EW12940, 825EW12840 | 100% | 2017-04-06 | 2017-04-12 | External Works - Labor [540 h] |  |  |
| 825EW12960 |  | Lay Road Base | 6d | 2017-03-18 A | 2017-03-23 A | 825EW12950, 825EW12850 | 100% | 2017-04-13 | 2017-04-22 | Road Base @ 210mm Thickness [1244 Sq m]; External Works - Labor [540 h] |  |  |
| 825EW12970 |  | Permanent Road Pavement Works | 6d | 2017-03-23 A | 2017-03-30 A | 825EW12960, 825EW12860 | 100% | 2017-04-24 | 2017-04-29 | Road Pavement @ 105mm Thickness [2488 Sq m]; External Works - Labor [540 h]; External Works - Concreting [540 h]; External Works - Rebar [540 h]; External Works - Formworks [60 h] |  |  |
|  | 6 | **AREA 1.7** |  | 2014-08-01 | 2016-11-25 |  |  |  |  |  |  |  |
|  | 1 | **CONSTRUCTION OF RETAINING WALLS (RW 825-01)** |  | 2014-08-01 | 2016-11-25 |  |  |  |  |  |  |  |
|  | 1 | **BAY 4 ~ BAY 13** |  | 2014-08-01 | 2015-02-21 |  |  |  |  |  |  |  |
| 8250EW0220 |  | Bay4~Bay13 - Excavation, Base Preparation & Lean Concrete | 14d | 2014-08-01 A | 2014-09-30 A | 8250SB1540 | 100% | 2015-02-28 | 2015-03-16 | External Works - Labor [1260 h] |  |  |
| 8250EW0225 |  | Bay4~Bay13 - Formworks, Rebar, Concreting & Curing | 30d | 2014-10-01 A | 2015-01-31 A | 8250EW0220 | 100% | 2015-03-17 | 2015-04-24 | Retaining Wall & Toe Wall [184 m3]; External Works - Labor [2700 h]; External Works - Concreting [2700 h]; External Works - Rebar [2700 h]; External Works - Formworks [300 h] |  |  |
| 8250EW0230 |  | Bay4~Bay13 - Dismantling & Backfilling Works | 14d | 2015-02-02 A | 2015-02-21 A | 8250EW0225 FS-6d | 100% | 2015-04-18 | 2015-05-05 | External Works - Labor [1260 h] |  |  |
|  | 2 | **BAY 1 ~ BAY 3** |  | 2015-09-15 | 2015-11-30 |  |  |  |  |  |  |  |
| 8250EW0235 |  | Bay1~Bay3 - Excavation, Base Preparation & Lean Concrete | 7d | 2015-09-15 A | 2015-09-21 A | 8250EW0230 | 100% | 2015-10-31 | 2015-11-07 | External Works - Labor [630 h] |  |  |
| 8250EW0240 |  | Bay1~Bay3 - Formworks, Rebar, Concreting & Curing | 15d | 2015-09-22 A | 2015-09-28 A | 8250EW0235 | 100% | 2016-07-08 | 2016-07-25 | Retaining Wall & Toe Wall [27.5 m3]; External Works - Labor [1350 h]; External Works - Concreting [1350 h]; External Works - Rebar [1350 h]; External Works - Formworks [150 h] |  |  |
| 8250EW0245 |  | Bay1~Bay3 - Dismantling & Backfilling Works | 7d | 2015-09-29 A | 2015-11-30 A | 8250EW0240 | 100% | 2016-07-26 | 2016-08-02 | External Works - Labor [630 h] |  |  |
|  | 4 | **BAY 14 ~ BAY 15** |  | 2015-09-30 | 2015-11-30 |  |  |  |  |  |  |  |
| 8250EW0233 |  | Bay14~Bay15 - Dismantling & Backfilling Works | 7d | 2015-09-30 A | 2015-11-30 A | 8250EW0232 | 100% | 2016-06-30 | 2016-07-08 | External Works - Labor [630 h] |  |  |
| 8250EW0231 |  | Bay14~Bay15 - Excavation, Base Preparation & Lean Concrete | 7d | 2015-10-02 A | 2015-10-09 A | 8250EW0220 | 100% |  |  | External Works - Labor [630 h] |  | Upd |
| 8250EW0232 |  | Bay14~Bay15 - Formworks, Rebar, Concreting & Curing | 15d | 2015-10-10 A | 2015-10-28 A | 8250EW0231 | 100% |  |  | Retaining Wall & Toe Wall [21.5 m3]; External Works - Labor [1350 h]; External Works - Concreting [1350 h]; External Works - Rebar [1350 h]; External Works - Formworks [150 h] |  | Upd |

| ID | WBS | Activity | Duration | Start | Finish | Predecessors | Complete | Planned start | Planned finish | Resources | Updated Progress Status |
| --- | --- | --- | --- | --- | --- | --- | --- | --- | --- | --- | --- |
|  | 3 | **BAY 16 ~ BAY 20** |  | 2016-04-13 | 2016-11-25 |  |  |  |  |  |  |
| 8250EW0250 |  | Bay16~Bay20 - Excavation, Base Preparation & Lean Concrete | 21d | 2016-04-13 A | 2016-05-13 A | 8250EW0231, 8250EW0233 | 100% | 2016-06-30 | 2016-07-25 | External Works - Labor [1890 h] | Upd |
| 8250EW0255 |  | Bay16~18 - Formworks, Rebar, Concreting & Curing (Part 1) | 60d | 2016-05-15 A | 2016-05-30 A | 8250EW0250 | 100% | 2016-07-26 | 2016-10-05 | Retaining Wall & Toe Wall [86 m3]; External Works - Labor [5400 h]; External Works - Concreting [5400 h]; External Works - Rebar [5400 h]; External Works - Formworks [600 h] | Upd |
| 8250EW0255-200 |  | Bay19~20 - Formworks, Rebar, Concreting & Curing (Part 2) | 35d | 2016-06-15 A | 2016-06-30 A | 8250EW0255 | 100% | 2016-07-26 | 2016-09-03 | Retaining Wall & Toe Wall [50.17 m3]; External Works - Labor [3150 h]; External Works - Concreting [3150 h]; External Works - Rebar [3150 h]; External Works - Formworks [350 h] | Upd |
| 8250EW0260 |  | Bay16~Bay20 - Dismantling & Backfilling Works | 45d | 2016-11-25 A | 2016-11-25 A | 8250EW0255, 8250EW0255-200 | 100% | 2016-11-25 | 2017-01-19 | External Works - Labor [4050 h] |  |
|  | 4 | **CONSTRUCTION OF RETAINING WALLS (RW 825-03)** |  | 2014-12-22 | 2015-05-28 |  |  |  |  |  |  |
|  | 1 | **BAY 1 ~ BAY 5** |  | 2014-12-22 | 2015-05-28 |  |  |  |  |  |  |
| 8250EW20810 |  | Bay1~Bay5 - Excavation, Base Preparation & Lean Concrete | 14d | 2014-12-22 A | 2015-02-07 A | 8250EW0220 | 100% | 2015-02-28 | 2015-03-16 | External Works - Labor [1260 h] |  |
| 8250EW20820 |  | Bay1~Bay5 - Formworks, Rebar, Concreting & Curing | 50d | 2015-02-09 A | 2015-05-23 A | 8250EW20810 | 100% | 2015-03-17 | 2015-05-19 | Retaining Wall & Toe Wall [92 m3]; External Works - Labor [4500 h]; External Works - Concreting [4500 h]; External Works - Rebar [4500 h]; External Works - Formworks [500 h] |  |
| 8250EW20830 |  | Bay1~Bay5 - Dismantling & Backfilling Works | 30d | 2015-05-26 A | 2015-05-28 A | 8250EW20820 FS-14d | 100% | 2015-06-13 | 2015-07-20 | External Works - Labor [2700 h] |  |
|  | 1 | **BAY 14 ~ BAY 15** |  |  |  |  |  |  |  |  |  |
|  | 1 | **BAY 16 ~ BAY 18** |  |  |  |  |  |  |  |  |  |
|  | 2 | **UTILITIES, STORM DRAINS, FOUL SEWERS & ROADWORK WITHIN SITE BOUNDARY** |  | 2015-09-29 | 2016-10-21 |  |  |  |  |  |  |
|  | 7 | **SM2.5 ~ SM2.7 (Approx. 30.956m)** |  | 2016-04-01 | 2016-10-21 |  |  |  |  |  |  |
| 825EW12450 |  | Implement TTMS | 2d | 2016-04-01 A | 2016-04-04 A | 8250EW0260, 8250VB2300, 825EW11110 | 100% | 2016-12-02 | 2016-12-03 |  |  |
| 825EW12460 |  | Preparation & Clearing | 4d | 2016-04-04 A | 2016-04-08 A | 825EW12450 | 100% | 2016-12-05 | 2016-12-08 |  |  |
| 825EW12470 |  | Breaking of Existing Concrete Pavement | 10d | 2016-04-11 A | 2016-04-20 A | 825EW12460, 825EW11130 | 100% | 2016-12-10 | 2016-12-21 |  |  |
| 825EW12480 |  | Excavation & Hauling | 6d | 2016-04-21 A | 2016-04-27 A | 825EW12470 | 100% | 2016-12-22 | 2016-12-30 |  |  |
| 825EW12490 |  | Existing Utilities Detection & Relocation | 6d | 2016-04-28 A | 2016-04-30 A | 825EW12480 | 100% | 2016-12-31 | 2017-01-07 |  |  |
| 825EW12500 |  | Take Down of Existing Kerbs and U-Channels | 6d | 2016-05-01 A | 2016-05-05 A | 825EW12490 | 100% | 2017-01-09 | 2017-01-14 |  |  |
| 825EW12510 |  | Road Formation & Base Preparation | 14d | 2016-05-04 A | 2016-05-06 A | 825EW12500, 825EW11170 | 100% | 2017-01-16 | 2017-02-03 |  |  |
| 825EW12520 |  | Lay Storm Drain Pipes, Foul Water Pipes & FW Main Pipes | 24d | 2016-05-08 A | 2016-05-26 A | 825EW12510 | 100% | 2017-02-04 | 2017-03-03 | External Works - Utilities Labor [2160 h] |  |
| 825EW12530 |  | Lay & Arrangment Utilities Drawpits/Ducts (CLP, Tel., Street Lights, etc.) | 24d | 2016-05-27 A | 2016-06-28 A | 825EW12510 | 100% | 2016-11-03 | 2016-11-30 | External Works - Utilities Labor [2160 h] |  |
| 825EW12540 |  | Install Gullies & RC Kerbs | 6d | 2016-06-29 A | 2016-07-08 A | 825EW12530 | 100% | 2016-12-01 | 2016-12-07 |  |  |
| 825EW12550 |  | Lay Manholes | 4d | 2016-07-09 A | 2016-07-19 A | 825EW12540 | 100% | 2016-12-08 | 2016-12-12 |  |  |
| 825EW12560 |  | Backfill to Formation | 6d | 2016-07-20 A | 2016-07-25 A | 825EW12550 | 100% | 2017-01-12 | 2017-01-18 |  |  |
| 825EW12570 |  | Lay Road Base | 6d | 2016-07-26 A | 2016-07-31 A | 825EW12560 | 100% | 2016-11-03 | 2016-11-09 | Road Base @ 210mm Thickness [394 Sq m]; External Works - Labor [540 h] |  |
| 825EW12580 |  | Permanent Road Pavement Works | 10d | 2016-10-03 A | 2016-10-21 A | 825EW12570 | 100% | 2016-10-31 | 2016-11-10 | Road Pavement @ 105mm Thickness [789 Sq m]; External Works - Labor [900 h]; External Works - Concreting [900 h]; External Works - Rebar [900 h]; External Works - Formworks [100 h] |  |

| ID | WBS | Activity | Duration | Start | Finish | Predecessors | Complete | Planned start | Planned finish | Resources |
| --- | --- | --- | --- | --- | --- | --- | --- | --- | --- | --- |
|  | 9 | **SM2.7 ~ SM2.8 (Approx. 17.262m)** |  | 2016-05-09 | 2016-10-21 |  |  |  |  |  |
| 825EW11110 |  | Implement TTMS | 2d | 2016-05-09 A | 2016-05-10 A | 8250VB2300 | 100% | 2016-11-03 | 2016-11-04 | External Works - Labor [180 h] |
| 825EW11120 |  | Preparation & Clearing | 2d | 2016-05-11 A | 2016-05-13 A | 825EW11110 | 100% | 2016-11-05 | 2016-11-07 | External Works - Labor [180 h] |
| 825EW11130 |  | Breaking of Existing Concrete Pavement | 5d | 2016-05-13 A | 2016-05-19 A | 825EW11120 | 100% | 2016-11-08 | 2016-11-12 | External Works - Labor [450 h] |
| 825EW11140 |  | Excavation & Hauling | 4d | 2016-05-20 A | 2016-05-24 A | 825EW11130 | 100% | 2016-11-14 | 2016-11-17 | External Works - Labor [360 h] |
| 825EW11150 |  | Existing Utilities Detection & Relocation | 5d | 2016-05-25 A | 2016-05-30 A | 825EW11140 | 100% | 2016-11-18 | 2016-11-23 | External Works - Labor [450 h] |
| 825EW11160 |  | Take Down of Existing Kerbs and U-Channels | 5d | 2016-06-01 A | 2016-06-07 A | 825EW11150 | 100% | 2016-11-24 | 2016-11-29 | External Works - Labor [450 h] |
| 825EW11170 |  | Road Formation & Base Preparation | 8d | 2016-06-06 A | 2016-06-13 A | 825EW11160 | 100% | 2016-12-29 | 2017-01-07 | External Works - Labor [720 h] |
| 825EW11180 |  | Lay Storm Drain Pipes, Foul Water Pipes & FW Main Pipes | 24d | 2016-06-13 A | 2016-06-23 A | 825EW11170 | 100% | 2016-11-30 | 2016-12-29 | External Works - Utilities Labor [2160 h]; External Works - Labor [2160 h] |
| 825EW11190 |  | Lay & Arrangment Utilities Drawpits/Ducts (CLP, Tel., Street Lights, etc.) | 24d | 2016-06-24 A | 2016-07-12 A | 825EW11170 | 100% | 2016-11-30 | 2016-12-29 | External Works - Utilities Labor [2160 h]; External Works - Labor [2160 h] |
| 825EW11200 |  | Install Gullies & RC Kerbs | 4d | 2016-07-12 A | 2016-07-14 A | 825EW11190 | 100% | 2016-12-30 | 2017-01-04 | External Works - Labor [360 h] |
| 825EW11210 |  | Lay Manholes | 2d | 2016-07-15 A | 2016-07-19 A | 825EW11200 | 100% | 2017-01-05 | 2017-01-06 | External Works - Labor [180 h] |
| 825EW11220 |  | Backfill to Formation | 4d | 2016-07-21 A | 2016-07-26 A | 825EW11210 | 100% | 2017-01-07 | 2017-01-11 | External Works - Labor [360 h] |
| 825EW11230 |  | Lay Road Base | 4d | 2016-07-27 A | 2016-07-31 A | 825EW11220 | 100% | 2017-01-12 | 2017-01-16 | Road Base @ 210mm Thickness [223 Sq m]; External Works - Labor [360 h] |
| 825EW11240 |  | Permanent Road Pavement Works | 4d | 2016-10-03 A | 2016-10-21 A | 825EW11230 | 100% | 2016-10-31 | 2016-11-03 | Road Pavement @ 105mm Thickness [445 Sq m]; External Works - Labor [360 h]; External Works - Concreting [360 h]; External Works - Rebar [360 h]; External Works - Formworks [40 h] |
|  | 10 | **SM2.8 ~ SM2.9 & SM2.10 (Approx. 21.669m)** |  | 2016-04-25 | 2016-10-21 |  |  |  |  |  |
| 825EW10110 |  | Implement TTMS | 2d | 2016-04-25 A | 2016-05-04 A | 825EW10300 | 100% | 2016-08-31 | 2016-09-01 | External Works - Labor [180 h] |
| 825EW10120 |  | Preparation & Clearing | 2d | 2016-05-07 A | 2016-05-13 A | 825EW10110 | 100% | 2016-09-02 | 2016-09-03 | External Works - Labor [180 h] |
| 825EW10130 |  | Breaking of Existing Concrete Pavement | 6d | 2016-05-13 A | 2016-05-19 A | 825EW10120 | 100% | 2016-09-05 | 2016-09-10 | External Works - Labor [540 h] |
| 825EW10140 |  | Excavation & Hauling | 4d | 2016-05-17 A | 2016-05-24 A | 825EW10130 | 100% | 2016-09-12 | 2016-09-15 | External Works - Labor [360 h] |
| 825EW10150 |  | Existing Utilities Detection & Relocation | 6d | 2016-05-21 A | 2016-05-26 A | 825EW10140 | 100% | 2016-09-17 | 2016-09-23 | External Works - Labor [540 h] |
| 825EW10160 |  | Take Down of Existing Kerbs and U-Channels | 6d | 2016-05-25 A | 2016-05-27 A | 825EW10150 | 100% | 2016-09-24 | 2016-09-30 | External Works - Labor [540 h] |
| 825EW10170 |  | Road Formation & Base Preparation | 14d | 2016-05-28 A | 2016-06-03 A | 825EW10160 | 100% | 2016-08-31 | 2016-09-15 | External Works - Labor [1260 h] |
| 825EW10180 |  | Lay Storm Drain Pipes, Foul Water Pipes & FW Main Pipes | 24d | 2016-06-07 A | 2016-06-23 A | 825EW10170 | 100% | 2016-10-03 | 2016-10-31 | External Works - Utilities Labor [2160 h]; External Works - Labor [2160 h] |
| 825EW10190 |  | Lay & Arrangment Utilities Drawpits/Ducts (CLP, Tel., Street Lights, etc.) | 24d | 2016-06-24 A | 2016-07-12 A | 825EW10180 FF, 825EW10180 SS | 100% | 2016-10-03 | 2016-10-31 | External Works - Utilities Labor [2160 h]; External Works - Labor [2160 h] |
| 825EW10200 |  | Install Gullies & RC Kerbs | 6d | 2016-07-13 A | 2016-07-18 A | 825EW10190 | 100% | 2016-11-01 | 2016-11-07 | External Works - Labor [540 h] |
| 825EW10210 |  | Lay Manholes | 2d | 2016-07-19 A | 2016-07-21 A | 825EW10200 | 100% | 2016-11-08 | 2016-11-09 | External Works - Labor [180 h] |
| 825EW10220 |  | Backfill to Formation | 6d | 2016-07-19 A | 2016-07-22 A | 825EW10210 | 100% | 2016-11-10 | 2016-11-16 | External Works - Labor [540 h] |
| 825EW10230 |  | Lay Road Base | 6d | 2016-07-23 A | 2016-07-31 A | 825EW10220 | 100% | 2016-11-17 | 2016-11-23 | Road Base @ 210mm Thickness [279 Sq m]; External Works - Labor [540 h] |
| 825EW10240 |  | Permanent Road Pavement Works | 6d | 2016-10-03 A | 2016-10-21 A | 825EW10230 | 100% | 2016-10-31 | 2016-11-05 | Road Pavement @ 105mm Thickness [559 Sq m]; External Works - Labor [540 h]; External Works - Concreting [540 h]; External Works - Rebar [540 h]; External Works - Formworks [60 h] |

| ID | WBS | Activity | Duration | Start | Finish | Predecessors | Complete | Planned start | Planned finish | Resources |
| --- | --- | --- | --- | --- | --- | --- | --- | --- | --- | --- |
|  | 11 | **SM2.9 ~ SM2.10** |  |  |  |  |  |  |  |  |
|  | 12 | **SM2.10 ~ SM2.11 (Approx. 22.325m)** |  | 2015-09-29 | 2016-10-21 |  |  |  |  |  |
| 825EW10250 |  | Implement TTMS | 2d | 2015-09-29 A | 2015-10-10 A | 8250AC080 | 100% | 2016-08-01 | 2016-08-02 | External Works - Labor [180 h] |
| 825EW10255 |  | Preparation & Clearing | 2d | 2015-10-15 A | 2015-10-20 A | 825EW10250 | 100% | 2016-08-03 | 2016-08-04 | External Works - Labor [180 h] |
| 825EW10260 |  | Breaking of Existing Concrete Pavement | 6d | 2015-10-31 A | 2015-10-31 A | 825EW10255 | 100% | 2016-08-05 | 2016-08-11 | External Works - Labor [540 h] |
| 825EW10270 |  | Excavation & Hauling | 4d | 2015-10-31 A | 2015-11-05 A | 825EW10260 | 100% | 2016-08-12 | 2016-08-16 | External Works - Labor [360 h] |
| 825EW10280 |  | Existing Utilities Detection & Relocation | 6d | 2015-11-05 A | 2015-11-11 A | 825EW10270 | 100% | 2016-08-17 | 2016-08-23 | External Works - Labor [540 h] |
| 825EW10290 |  | Take Down of Existing Kerbs and U-Channels | 6d | 2015-11-12 A | 2015-11-19 A | 825EW10280 | 100% | 2016-08-24 | 2016-08-30 | External Works - Labor [540 h] |
| 825EW10300 |  | Road Formation & Base Preparation | 14d | 2015-11-19 A | 2015-12-08 A | 825EW10290 | 100% | 2016-08-01 | 2016-08-16 | External Works - Labor [1260 h] |
| 825EW10310 |  | Lay Storm Drain Pipes, Foul Water Pipes & FW Main Pipes | 24d | 2015-12-09 A | 2015-12-24 A | 825EW10300 | 100% | 2016-08-31 | 2016-09-28 | External Works - Utilities Labor [2160 h]; External Works - Labor [2160 h] |
| 825EW10320 |  | Lay & Arrangment Utilities Drawpits/Ducts (CLP, Tel., Street Lights, etc.) | 24d | 2015-12-24 A | 2016-01-05 A | 825EW10310 | 100% | 2016-09-29 | 2016-10-28 | External Works - Utilities Labor [2160 h]; External Works - Labor [2160 h] |
| 825EW10330 |  | Install Gullies & RC Kerbs | 6d | 2016-01-05 A | 2016-01-12 A | 825EW10320 | 100% | 2016-09-27 | 2016-10-04 | External Works - Labor [540 h] |
| 825EW10340 |  | Lay Manholes | 2d | 2016-01-13 A | 2016-01-19 A | 825EW10330 | 100% | 2016-10-29 | 2016-10-31 | External Works - Labor [180 h] |
| 825EW10350 |  | Backfill to Formation | 6d | 2016-01-20 A | 2016-01-26 A | 825EW10340 | 100% | 2016-11-01 | 2016-11-07 | External Works - Labor [540 h] |
| 825EW10360 |  | Lay Road Base | 6d | 2016-01-27 A | 2016-01-31 A | 825EW10350 | 100% | 2016-11-01 | 2016-11-07 | Road Base @ 210mm Thickness [288 Sq m]; External Works - Labor [540 h] |
| 825EW10365 |  | Permanent Road Pavement Works | 6d | 2016-10-03 A | 2016-10-21 A | 825EW10360 | 100% | 2016-10-31 | 2016-11-05 | Road Pavement @ 105mm Thickness [576 Sq m]; External Works - Labor [540 h]; External Works - Concreting [540 h]; External Works - Rebar [540 h]; External Works - Formworks [60 h] |
|  | 13 | **SM2.11 ~ SM2.12 & SM7.1 (Approx. 24.521m)** |  | 2015-10-22 | 2016-10-21 |  |  |  |  |  |
| 825EW10370 |  | Implement TTMS | 2d | 2015-10-22 A | 2015-10-27 A | 825EW10580 | 100% | 2016-10-29 | 2016-10-31 | External Works - Labor [180 h] |
| 825EW10380 |  | Preparation & Clearing | 2d | 2015-10-30 A | 2015-11-02 A | 825EW10370 | 100% | 2016-11-01 | 2016-11-02 | External Works - Labor [180 h] |
| 825EW10390 |  | Breaking of Existing Concrete Pavement | 6d | 2015-11-04 A | 2015-11-13 A | 825EW10380 | 100% | 2016-11-03 | 2016-11-09 | External Works - Labor [540 h] |
| 825EW10400 |  | Excavation & Hauling | 4d | 2015-11-16 A | 2015-11-21 A | 825EW10390 | 100% | 2016-11-10 | 2016-11-14 | External Works - Labor [360 h] |
| 825EW10410 |  | Existing Utilities Detection & Relocation | 6d | 2015-11-23 A | 2015-12-03 A | 825EW10400 | 100% | 2016-11-15 | 2016-11-21 | External Works - Labor [540 h] |
| 825EW10420 |  | Take Down of Existing Kerbs and U-Channels | 6d | 2015-12-08 A | 2015-12-19 A | 825EW10410 | 100% | 2016-11-22 | 2016-11-28 | External Works - Labor [540 h] |
| 825EW10430 |  | Road Formation & Base Preparation | 14d | 2015-12-19 A | 2016-01-02 A | 825EW10420 | 100% | 2016-12-01 | 2016-12-16 | External Works - Labor [1260 h] |
| 825EW10440 |  | Lay Storm Drain Pipes, Foul Water Pipes & FW Main Pipes | 24d | 2015-12-31 A | 2016-01-09 A | 825EW10430 | 100% | 2016-11-29 | 2016-12-28 | External Works - Utilities Labor [2160 h]; External Works - Labor [2160 h] |
| 825EW10450 |  | Lay & Arrangment Utilities Drawpits/Ducts (CLP, Tel., Street Lights, etc.) | 24d | 2016-01-09 A | 2016-01-23 A | 825EW10440 FF, 825EW10440 SS | 100% | 2016-11-29 | 2016-12-28 | External Works - Utilities Labor [2160 h]; External Works - Labor [2160 h] |
| 825EW10460 |  | Install Gullies & RC Kerbs | 6d | 2016-01-26 A | 2016-01-28 A | 825EW10450 | 100% | 2016-12-13 | 2016-12-19 | External Works - Labor [540 h] |
| 825EW10470 |  | Lay Manholes | 2d | 2016-01-30 A | 2016-02-04 A | 825EW10460 | 100% | 2016-12-29 | 2016-12-30 | External Works - Labor [180 h] |
| 825EW10480 |  | Backfill to Formation | 6d | 2016-02-05 A | 2016-02-13 A | 825EW10470 | 100% | 2016-12-31 | 2017-01-07 | External Works - Labor [540 h] |
| 825EW10490 |  | Lay Road Base | 6d | 2016-02-13 A | 2016-02-18 A | 825EW10480 | 100% | 2017-02-18 | 2017-02-24 | Road Base @ 210mm Thickness [316 Sq m]; External Works - Labor [540 h] |
| 825EW10500 |  | Permanent Road Pavement Works | 6d | 2016-10-03 A | 2016-10-21 A | 825EW10490 | 100% | 2016-10-31 | 2016-11-05 | Road Pavement @ 105mm Thickness [632 Sq m]; External Works - Labor [540 h]; External Works - Concreting [540 h]; External Works - Rebar [540 h]; External Works - Formworks [60 h] |

| ID | WBS | Activity | Duration | Start | Finish | Predecessors | Complete | Planned start | Planned finish | Resources |
| --- | --- | --- | --- | --- | --- | --- | --- | --- | --- | --- |
|  | 15 | **SM2.12 ~ SM2.13 (Approx. 21.112m)** |  | 2015-10-22 | 2016-10-21 |  |  |  |  |  |
| 825EW10520 |  | Implement TTMS | 2d | 2015-10-22 A | 2015-10-24 A | 825EW10720 | 100% | 2016-09-27 | 2016-09-28 | External Works - Labor [180 h] |
| 825EW10530 |  | Preparation & Clearing | 2d | 2015-11-14 A | 2015-11-14 A | 825EW10520 | 100% | 2016-09-29 | 2016-09-30 | External Works - Labor [180 h] |
| 825EW10540 |  | Breaking of Existing Concrete Pavement | 6d | 2015-11-24 A | 2015-11-25 A | 825EW10530 | 100% | 2016-10-03 | 2016-10-08 | External Works - Labor [540 h] |
| 825EW10550 |  | Excavation & Hauling | 4d | 2015-11-28 A | 2015-12-03 A | 825EW10540 | 100% | 2016-10-11 | 2016-10-14 | External Works - Labor [360 h] |
| 825EW10560 |  | Existing Utilities Detection & Relocation | 6d | 2015-12-03 A | 2015-12-15 A | 825EW10550 | 100% | 2016-10-15 | 2016-10-21 | External Works - Labor [540 h] |
| 825EW10570 |  | Take Down of Existing Kerbs and U-Channels | 6d | 2015-12-15 A | 2015-12-18 A | 825EW10560 | 100% | 2016-10-22 | 2016-10-28 | External Works - Labor [540 h] |
| 825EW10580 |  | Road Formation & Base Preparation | 14d | 2015-12-19 A | 2015-12-24 A | 825EW10570 | 100% | 2016-10-15 | 2016-10-31 | External Works - Labor [1260 h] |
| 825EW10590 |  | Lay Storm Drain Pipes, Foul Water Pipes & FW Main Pipes | 24d | 2015-12-29 A | 2016-01-09 A | 825EW10580 | 100% | 2016-09-27 | 2016-10-26 | External Works - Utilities Labor [2160 h]; External Works - Labor [2160 h] |
| 825EW10600 |  | Lay & Arrangment Utilities Drawpits/Ducts (CLP, Tel., Street Lights, etc.) | 24d | 2016-01-13 A | 2016-01-28 A | 825EW10580 | 100% | 2016-09-27 | 2016-10-26 | External Works - Utilities Labor [2160 h]; External Works - Labor [2160 h] |
| 825EW10610 |  | Install Gullies & RC Kerbs | 6d | 2016-01-28 A | 2016-02-02 A | 825EW10600 | 100% | 2016-11-12 | 2016-11-18 | External Works - Labor [540 h] |
| 825EW10620 |  | Lay Manholes | 2d | 2016-02-02 A | 2016-02-06 A | 825EW10610 | 100% | 2016-10-27 | 2016-10-28 | External Works - Labor [180 h] |
| 825EW10630 |  | Backfill to Formation | 6d | 2016-02-06 A | 2016-02-13 A | 825EW10620 | 100% | 2016-11-29 | 2016-12-05 | External Works - Labor [540 h] |
| 825EW10640 |  | Lay Road Base | 6d | 2016-02-16 A | 2016-02-22 A | 825EW10630 | 100% | 2016-12-29 | 2017-01-05 | Road Base @ 210mm Thickness [272 Sq m]; External Works - Labor [540 h] |
| 825EW10650 |  | Permanent Road Pavement Works | 6d | 2016-10-03 A | 2016-10-21 A | 825EW10640 | 100% | 2016-10-31 | 2016-11-05 | Road Pavement @ 105mm Thickness [544 Sq m]; External Works - Labor [540 h]; External Works - Concreting [540 h]; External Works - Rebar [540 h]; External Works - Formworks [60 h] |
|  | 16 | **SM2.13 ~ SM5.4 & SM8.1 (Approx. 31.371m)** |  | 2016-05-09 | 2016-10-21 |  |  |  |  |  |
| 825EW10660 |  | Implement TTMS | 2d | 2016-05-09 A | 2016-05-10 A | 825EW10860 | 100% | 2016-08-24 | 2016-08-25 | External Works - Labor [180 h] |
| 825EW10670 |  | Preparation & Clearing | 2d | 2016-05-11 A | 2016-05-13 A | 825EW10660 | 100% | 2016-08-26 | 2016-08-27 | External Works - Labor [180 h] |
| 825EW10680 |  | Breaking of Existing Concrete Pavement | 6d | 2016-05-14 A | 2016-05-20 A | 825EW10670 | 100% | 2016-08-29 | 2016-09-03 | External Works - Labor [540 h] |
| 825EW10690 |  | Excavation & Hauling | 6d | 2016-05-20 A | 2016-05-25 A | 825EW10680 | 100% | 2016-09-05 | 2016-09-10 | External Works - Labor [540 h] |
| 825EW10700 |  | Existing Utilities Detection & Relocation | 6d | 2016-05-25 A | 2016-05-31 A | 825EW10690 | 100% | 2016-09-12 | 2016-09-19 | External Works - Labor [540 h] |
| 825EW10710 |  | Take Down of Existing Kerbs and U-Channels | 6d | 2016-06-01 A | 2016-06-07 A | 825EW10700 | 100% | 2016-09-20 | 2016-09-26 | External Works - Labor [540 h] |
| 825EW10720 |  | Road Formation & Base Preparation | 14d | 2016-06-08 A | 2016-06-17 A | 825EW10710, 8250EW0245 | 100% | 2016-08-26 | 2016-09-10 | External Works - Labor [1260 h] |
| 825EW10730 |  | Lay Storm Drain Pipes, Foul Water Pipes & FW Main Pipes | 24d | 2016-06-17 A | 2016-06-30 A | 825EW10720 | 100% | 2016-09-27 | 2016-10-26 | External Works - Utilities Labor [2160 h]; External Works - Labor [2160 h] |
| 825EW10740 |  | Lay & Arrangment Utilities Drawpits/Ducts (CLP, Tel., Street Lights, etc.) | 24d | 2016-07-01 A | 2016-07-20 A | 825EW10730 FF, 825EW10730 SS | 100% | 2016-09-27 | 2016-10-26 | External Works - Utilities Labor [2160 h]; External Works - Labor [2160 h] |
| 825EW10750 |  | Install Gullies & RC Kerbs | 6d | 2016-07-21 A | 2016-07-26 A | 825EW10740 | 100% | 2016-10-13 | 2016-10-19 | External Works - Labor [540 h] |
| 825EW10760 |  | Lay Manholes | 2d | 2016-07-26 A | 2016-07-28 A | 825EW10750 | 100% | 2016-10-27 | 2016-10-28 | External Works - Labor [180 h] |
| 825EW10770 |  | Backfill to Formation | 6d | 2016-07-28 A | 2016-07-29 A | 825EW10760 | 100% | 2016-10-29 | 2016-11-04 | External Works - Labor [540 h] |
| 825EW10780 |  | Lay Road Base | 6d | 2016-07-29 A | 2016-07-31 A | 825EW10770 | 100% | 2016-11-10 | 2016-11-16 | Road Base @ 210mm Thickness [404 Sq m]; External Works - Labor [540 h] |
| 825EW10790 |  | Permanent Road Pavement Works | 6d | 2016-10-03 A | 2016-10-21 A | 825EW10780 | 100% | 2016-10-31 | 2016-11-05 | Road Pavement @ 105mm Thickness [809 Sq m]; External Works - Concreting [540 h]; External Works - Rebar [540 h]; External Works - Formworks [60 h]; External Works - Labor [540 h] |

| ID | WBS | Activity | Duration | Start | Finish | Predecessors | Complete | Planned start | Planned finish | Resources |
| --- | --- | --- | --- | --- | --- | --- | --- | --- | --- | --- |
|  | 14 | **AREA 1.10** |  | 2014-10-02 | 2017-06-09 |  |  |  |  |  |
|  | 2 | **UTILITIES, STORM DRAINS, FOUL SEWERS & ROADWORK WITHIN SITE BOUNDARY** |  | 2014-10-02 | 2017-06-09 |  |  |  |  |  |
|  | 1 | **STORM WATER WORKS** |  | 2014-10-02 | 2017-04-28 |  |  |  |  |  |
| 8250CC11420 |  | Demolition of Existing Retaining Wall | 13d | 2014-10-02 A | 2014-11-20 A | 8250EW20830 | 100% | 2016-06-30 | 2016-07-15 | External Works - Labor [1170 h] |
| 8250CC11430 |  | Prepare Ground to Receive Pipe at Location A | 8d | 2014-11-21 A | 2014-12-25 A | 8250CC11420 | 100% | 2016-07-16 | 2016-07-25 | External Works - Labor [720 h] |
| 8250CC11440 |  | Install Drain Pipe at Location A | 15d | 2015-03-02 A | 2015-04-30 A | 8250CC11430 | 100% | 2016-07-26 | 2016-08-11 | External Works - Labor [1350 h] |
| 8250CC11450 |  | Sheet Piling and Set Up Jacking Equit at Location B | 7d | 2015-12-01 A | 2015-12-30 A |  | 100% | 2016-08-31 | 2016-09-07 | External Works - Labor [630 h] |
| 8250CC11460 |  | Temporary Plug on Culvert at Location B | 9d | 2017-04-01 A | 2017-04-11 A | 8250CC11450 | 100% | 2017-05-02 | 2017-05-12 | External Works - Labor [810 h] |
| 8250CC11470 |  | Permanent Connection to Culvert at Location B | 6d | 2017-04-12 A | 2017-04-19 A | 8250CC11460 | 100% | 2017-05-13 | 2017-05-19 | External Works - Labor [540 h] |
| 8250CC11480 |  | Leak Tests | 5d | 2017-04-20 A | 2017-04-22 A | 8250CC11470 | 100% | 2017-05-20 | 2017-05-25 | External Works - Labor [450 h] |
| 8250CC11490 |  | Backfilling | 8d | 2017-04-24 A | 2017-04-28 A | 8250CC11480 | 100% | 2017-05-26 | 2017-06-05 | External Works - Labor [720 h] |
|  | 2 | **FOUL WORKS** |  | 2014-11-01 | 2017-06-09 |  |  |  |  |  |
| 8250CC11500 |  | Complete Installation of Pipe FM 2.8 - FM 2.3 | 80d | 2014-11-01 A | 2015-02-07 A | 8250EW20830 | 100% | 2015-10-31 | 2016-02-04 | External Works - Labor [7200 h] |
| 8250CC11510 |  | Backfilling | 5d | 2015-02-08 A | 2015-02-15 A | 8250CC11500 | 100% | 2016-02-11 | 2016-02-16 | External Works - Labor [450 h] |
| 8250CC20360 |  | Complete Installation of Pipe FM 2.3 - FM 2.1 | 35d | 2016-06-02 A | 2016-11-17 A | 8250CC11510 | 100% | 2016-06-30 | 2016-08-10 | External Works - Labor [3150 h] |
| 8250CC20370 |  | Backfilling | 13d | 2017-02-09 A | 2017-02-18 A | 8250CC20360 | 100% | 2017-02-28 | 2017-03-14 | External Works - Labor [1170 h] |
| 8250CC20380 |  | Complete Installation of Pipe FM 1.6 - FM 2.1 | 35d | 2017-02-19 A | 2017-02-28 A | 8250CC20370 | 100% | 2017-03-15 | 2017-04-28 | External Works - Labor [3150 h] |
| 8250CC20390 |  | Backfilling | 12d | 2017-05-02 A | 2017-06-09 A | 8250CC20380 | 100% | 2017-05-31 | 2017-06-13 | External Works - Labor [1080 h] |
|  | 17 | **SM5.2 ~SM5.3 (Approx. 16.308m)** |  | 2016-05-02 | 2016-10-21 |  |  |  |  |  |
| 825EW10800 |  | Implement TTMS | 2d | 2016-05-02 A | 2016-05-03 A | 8250EW0230 | 100% | 2016-08-01 | 2016-08-02 | External Works - Labor [180 h] |
| 825EW10810 |  | Preparation & Clearing | 2d | 2016-05-03 A | 2016-05-06 A | 825EW10800 | 100% | 2016-08-03 | 2016-08-04 | External Works - Labor [180 h] |
| 825EW10820 |  | Breaking of Existing Concrete Pavement | 4d | 2016-05-07 A | 2016-05-10 A | 825EW10810 | 100% | 2016-08-05 | 2016-08-09 | External Works - Labor [360 h] |
| 825EW10830 |  | Excavation & Hauling | 4d | 2016-05-10 A | 2016-05-13 A | 825EW10820 | 100% | 2016-08-10 | 2016-08-13 | External Works - Labor [360 h] |
| 825EW10840 |  | Existing Utilities Detection & Relocation | 4d | 2016-05-14 A | 2016-05-17 A | 825EW10830 | 100% | 2016-08-15 | 2016-08-18 | External Works - Labor [360 h] |
| 825EW10850 |  | Take Down of Existing Kerbs and U-Channels | 4d | 2016-05-17 A | 2016-05-21 A | 825EW10840 | 100% | 2016-08-19 | 2016-08-23 | External Works - Labor [360 h] |
| 825EW10860 |  | Road Formation & Base Preparation | 10d | 2016-05-21 A | 2016-05-31 A | 825EW10850 | 100% | 2016-07-25 | 2016-08-04 | External Works - Labor [900 h] |
| 825EW10870 |  | Lay Storm Drain Pipes, Foul Water Pipes & FW Main Pipes | 24d | 2016-06-01 A | 2016-06-23 A | 825EW10860 | 100% | 2016-08-24 | 2016-09-21 | External Works - Labor [2160 h]; External Works - Utilities Labor [2160 h] |
| 825EW10880 |  | Lay & Arrangment Utilities Drawpits/Ducts (CLP, Tel., Street Lights, etc.) | 24d | 2016-06-24 A | 2016-07-15 A | 825EW10870 FF, 825EW10870 SS | 100% | 2016-08-24 | 2016-09-21 | External Works - Labor [2160 h]; External Works - Utilities Labor [2160 h] |
| 825EW10890 |  | Install Gullies & RC Kerbs | 4d | 2016-07-16 A | 2016-07-20 A | 825EW10880 | 100% | 2016-09-22 | 2016-09-26 | External Works - Labor [360 h] |
| 825EW10900 |  | Lay Manholes | 2d | 2016-07-21 A | 2016-07-23 A | 825EW10890 | 100% | 2016-09-27 | 2016-09-28 | External Works - Labor [180 h] |
| 825EW10910 |  | Backfill to Formation | 4d | 2016-07-24 A | 2016-07-27 A | 825EW10900 | 100% | 2016-09-29 | 2016-10-04 | External Works - Labor [360 h] |
| 825EW10920 |  | Lay Road Base | 4d | 2016-07-27 A | 2016-07-31 A | 825EW10910 | 100% | 2016-09-14 | 2016-09-19 | External Works - Labor [360 h]; Road Base @ 210mm Thickness [210 Sq m] |
| 825EW10930 |  | Permanent Road Pavement Works | 4d | 2016-07-31 A | 2016-10-21 A | 825EW10920 | 100% | 2016-09-02 | 2016-09-06 | External Works - Labor [360 h]; External Works - Concreting [360 h]; External Works - Rebar [360 h]; External Works - Formworks [40 h]; Road Pavement @ 105mm Thickness [420 Sq m] |

| ID | WBS | Activity | Duration | Start | Finish | Predecessors | Complete | Planned start | Planned finish | Resources |
| --- | --- | --- | --- | --- | --- | --- | --- | --- | --- | --- |
|  | 18 | **SM5.3 ~ SM5.4 (Approx. 28.316m)** |  | 2016-05-02 | 2016-10-21 |  |  |  |  |  |
| 825EW10940 |  | Implement TTMS | 2d | 2016-05-02 A | 2016-05-03 A | 825EW10860 | 100% | 2016-08-24 | 2016-08-25 | External Works - Labor [180 h] |
| 825EW10950 |  | Preparation & Clearing | 2d | 2016-05-03 A | 2016-05-06 A | 825EW10940 | 100% | 2016-08-26 | 2016-08-27 | External Works - Labor [180 h] |
| 825EW10960 |  | Breaking of Existing Concrete Pavement | 6d | 2016-05-07 A | 2016-05-10 A | 825EW10950 | 100% | 2016-08-29 | 2016-09-03 | External Works - Labor [540 h] |
| 825EW10970 |  | Excavation & Hauling | 6d | 2016-05-10 A | 2016-05-13 A | 825EW10960 | 100% | 2016-09-05 | 2016-09-10 | External Works - Labor [540 h] |
| 825EW10980 |  | Existing Utilities Detection & Relocation | 5d | 2016-05-14 A | 2016-05-17 A | 825EW10970 | 100% | 2016-09-12 | 2016-09-17 | External Works - Labor [450 h] |
| 825EW10990 |  | Take Down of Existing Kerbs and U-Channels | 6d | 2016-05-17 A | 2016-05-21 A | 825EW10980 | 100% | 2016-09-19 | 2016-09-24 | External Works - Labor [540 h] |
| 825EW11000 |  | Road Formation & Base Preparation | 14d | 2016-05-21 A | 2016-05-31 A | 825EW10990 | 100% | 2016-09-06 | 2016-09-22 | External Works - Labor [1260 h] |
| 825EW11010 |  | Lay Storm Drain Pipes, Foul Water Pipes & FW Main Pipes | 24d | 2016-06-01 A | 2016-06-23 A | 825EW11000 | 100% | 2016-09-26 | 2016-10-25 | External Works - Labor [2160 h]; External Works - Utilities Labor [2160 h] |
| 825EW11020 |  | Lay & Arrangment Utilities Drawpits/Ducts (CLP, Tel., Street Lights, etc.) | 24d | 2016-06-24 A | 2016-07-15 A | 825EW11010 FF, 825EW11010 SS | 100% | 2016-09-26 | 2016-10-25 | External Works - Labor [2160 h]; External Works - Utilities Labor [2160 h] |
| 825EW11030 |  | Install Gullies & RC Kerbs | 6d | 2016-07-16 A | 2016-07-20 A | 825EW11020 | 100% | 2016-10-26 | 2016-11-01 | External Works - Labor [540 h] |
| 825EW11040 |  | Lay Manholes | 2d | 2016-07-21 A | 2016-07-23 A | 825EW11030 | 100% | 2016-11-02 | 2016-11-03 | External Works - Labor [180 h] |
| 825EW11050 |  | Backfill to Formation | 6d | 2016-07-24 A | 2016-07-27 A | 825EW11040 | 100% | 2016-11-04 | 2016-11-10 | External Works - Labor [540 h] |
| 825EW11060 |  | Lay Road Base | 6d | 2016-07-27 A | 2016-07-31 A | 825EW11050 | 100% | 2016-11-09 | 2016-11-15 | External Works - Labor [540 h]; Road Base @ 210mm Thickness [365 Sq m] |
| 825EW11070 |  | Permanent Road Pavement Works | 6d | 2016-07-31 A | 2016-10-21 A | 825EW11060 | 100% | 2016-10-12 | 2016-10-18 | External Works - Labor [540 h]; External Works - Concreting [540 h]; External Works - Rebar [540 h]; External Works - Formworks [60 h]; Road Pavement @ 105mm Thickness [730 Sq m] |
|  | 3 | **SM5.4 ~ CP5.6 (Approx. 29.318m)** |  | 2015-10-14 | 2017-05-30 |  |  |  |  |  |
| 8250EW2310 |  | Implement TTMS | 2d | 2015-10-14 A | 2016-07-27 A | 825EW11000 | 100% | 2016-08-25 | 2016-08-26 | External Works - Labor [180 h] |
| 8250EW2320 |  | Preparation & Clearing | 2d | 2015-11-01 A | 2015-11-02 A | 8250EW2310 | 100% | 2016-08-27 | 2016-08-29 | External Works - Labor [180 h] |
| 8250EW2330 |  | Breaking of Existing Concrete Pavement | 6d | 2015-11-03 A | 2015-11-17 A | 8250EW2320 | 100% | 2016-08-30 | 2016-09-05 | External Works - Labor [540 h] |
| 8250EW2340 |  | Excavation & Hauling | 6d | 2015-12-10 A | 2015-12-15 A | 8250EW2330 | 100% | 2016-09-06 | 2016-09-12 | External Works - Labor [540 h] |
| 8250EW2350 |  | Existing Utilities Detection & Relocation | 4d | 2015-12-16 A | 2015-12-24 A | 8250EW2340 | 100% | 2016-09-13 | 2016-09-17 | External Works - Labor [360 h] |
| 8250EW2360 |  | Take Down of Existing Kerbs and U-Channels | 6d | 2015-12-23 A | 2016-12-31 A | 8250EW2350 | 100% | 2016-09-19 | 2016-09-24 | External Works - Labor [540 h] |
| 8250EW2370 |  | Road Formation & Base Preparation | 14d | 2016-01-01 A | 2016-01-31 A | 8250EW2360 | 100% | 2016-10-26 | 2016-11-10 | External Works - Labor [1260 h] |
| 8250EW2430 |  | Lay Road Base | 6d | 2016-02-01 A | 2017-02-15 A | 8250EW2420 | 100% | 2016-12-28 | 2017-01-04 | External Works - Labor [540 h]; Road Base @ 210mm Thickness [378 Sq m] |
| 8250EW2440 |  | Permanent Road Pavement Works | 6d | 2016-02-16 A | 2016-02-17 A | 8250EW2430 | 100% | 2016-10-12 | 2016-10-18 | External Works - Labor [540 h]; External Works - Concreting [540 h]; External Works - Rebar [540 h]; External Works - Formworks [60 h]; Road Pavement @ 105mm Thickness [756 Sq m] |
| 8250EW2380 |  | Lay Storm Drain Pipes, Foul Water Pipes & FW Main Pipes | 24d | 2016-12-08 A | 2016-12-30 A | 8250EW2370 | 100% | 2016-12-31 | 2017-02-01 | External Works - Labor [2160 h]; External Works - Utilities Labor [2160 h] |
| 8250EW2390 |  | Lay & Arrangment Utilities Drawpits/Ducts (CLP, Tel., Street Lights, etc.) | 24d | 2017-01-01 A | 2017-01-20 A | 8250EW2380 FF, 8250EW2380 SS | 100% | 2017-02-01 | 2017-02-28 | External Works - Labor [2160 h]; External Works - Utilities Labor [2160 h] |
| 8250EW2400 |  | Install Gullies & RC Kerbs | 6d | 2017-01-23 A | 2017-05-11 A | 8250EW2390 | 100% | 2017-03-01 | 2017-03-07 | External Works - Labor [540 h] |
| 8250EW2410 |  | Lay Manholes | 2d | 2017-05-11 A | 2017-05-24 A | 8250EW2400 | 100% | 2017-06-07 | 2017-06-08 | External Works - Labor [180 h] |
| 8250EW2420 |  | Backfill to Formation | 6d | 2017-05-25 A | 2017-05-30 A | 8250EW2410 | 100% | 2017-06-09 | 2017-06-15 | External Works - Labor [540 h] |

| ID | WBS | Activity | Duration | Start | Finish | Predecessors | Complete | Planned start | Planned finish | Resources | DRP Rev5 Filter | Day Start | Day Finish | 825 Phase | 825 Location | 825 Sub-location | Critical Path 3 |
| --- | --- | --- | --- | --- | --- | --- | --- | --- | --- | --- | --- | --- | --- | --- | --- | --- | --- |
|  | 825 | **LOCATION A & B (EI)** |  |  |  |  |  |  |  |  |  |  |  |  |  |  |  |
|  | 1 | **EXISTING UTILITIES ARRANGEMENT & TRANSITION WORKS FROM CASTLE PEAK RD TO PERMANENT EVA RD** |  | 2015-02-02 | 2017-04-28 |  |  |  |  |  |  |  |  |  |  |  |  |
| 8250EW6100 |  | TTMS Submission/Approval/Excavation Permit | 75d | 2015-02-02 A | 2015-09-09 A | 8250CC10080 | 100% | 2015-02-28 | 2015-06-02 |  |  |  |  |  |  |  |  |
| 8250EW6110 |  | Trial Trenches for Existing Utilities/Agree the Arrangement w/ Utilities Companies | 40d | 2015-11-01 A | 2015-11-30 A | 8250EW6100 | 100% | 2016-06-30 | 2016-08-16 |  |  |  |  |  |  |  |  |
| 8250EW6120 |  | Exposure/ELS/Slope Protection/Sheet Piling Works for Existing Utilities (Part 1) | 35d | 2016-07-04 A | 2016-07-09 A | 8250EW6110 | 100% | 2016-06-30 | 2016-08-10 |  |  |  |  |  |  |  |  |
| 8250EW6120-100 |  | Exposure/ELS/Slope Protection/Sheet Piling Works for Existing Utilities (Part 2) | 10d | 2016-07-04 A | 2016-07-14 A | 8250EW6120 | 100% | 2016-08-11 | 2016-08-22 |  |  |  |  |  |  |  |  |
| 8250EW6130 |  | Maintain/Connect/Lower the Existing Utilities (If Required) (Part 1) | 20d | 2016-07-04 A | 2016-09-30 A | 8250EW6120, 8250EW6120-100 | 100% | 2016-08-17 | 2016-09-08 |  |  |  |  |  |  |  |  |
| 8250EW6130-100 |  | Maintain/Connect/Lower the Existing Utilities (If Required) (Part 2) | 20d | 2016-11-01 A | 2016-11-24 A | 8250EW6130 | 100% | 2016-11-30 | 2016-12-22 |  |  |  |  |  |  |  |  |
| 8250EW6130-200 |  | Maintain/Connect/Lower the Existing Utilities (If Required) (Part 3) | 20d | 2017-01-01 A | 2017-01-31 A | 8250EW6130-100 | 100% | 2017-02-01 | 2017-02-23 |  |  |  |  |  |  |  |  |
| 8250EW6140 |  | Restoration of Utilities and Road Works | 10d | 2017-01-29 A | 2017-04-28 A | 825EW11070, 8250EW2440, 825EW10650, 825EW10790, 825EW10930, 8250EW6130-100, 8250EW6130, 8250EW6130-200 | 100% | 2017-03-17 | 2017-03-28 | General Labor (Crew of 4) [866.67 h] |  |  |  |  |  |  |  |
|  | 2 | **PERMANENT UTILITIES LAYING** |  | 2016-12-02 | 2017-06-06 |  |  |  |  |  |  |  |  |  |  |  |  |
| 8250CC20500 |  | Telephone Cables - Road B | 21d | 2016-12-02 A | 2016-12-29 A | 8250CC20490 | 100% | 2017-02-04 | 2017-02-28 | External Works - Utilities Labor [1890 h] |  |  |  |  |  |  |  |
| 8250CC20505 |  | Telephone Cables - Road A | 21d | 2016-12-02 A | 2016-12-29 A | 8250CC20495 FF, 8250CC20495 SS | 100% | 2017-01-07 | 2017-02-03 | External Works - Utilities Labor [1890 h] |  |  |  |  |  |  |  |
| 8250CC20490 |  | CLP Cables (HV & LV) - Road B | 26d | 2017-03-01 A | 2017-03-15 A | 825EW10430, 825EW10720, 825EW10170, 825EW10300, 8250EW2370, 825EW10860, 825EW11000, 825EW10580 | 100% | 2017-03-31 | 2017-05-06 | External Works - Utilities Labor [2340 h] |  |  |  |  |  |  |  |
| 8250CC20495 |  | CLP Cables (HV & LV) - Road A | 26d | 2017-03-01 A | 2017-04-15 A | 825EW11170, 825EW10860, 825EW12790, 825EW12890 | 100% | 2017-03-31 | 2017-05-06 | External Works - Utilities Labor [2340 h] |  |  |  |  |  |  |  |
| 8250CC20510 |  | Street Lighting Cabes - Road B | 21d | 2017-03-07 A | 2017-06-06 A | 825EW10610, 825EW10890, 825EW11030, 825EW10750, 8250EW2400, 825EW10330, 825EW10460, 825EW10200 | 100% | 2017-04-08 | 2017-05-08 | External Works - Utilities Labor [1890 h] |  |  |  |  |  |  |  |
| 8250CC20515 |  | Street Lighting Cabes - Road A | 21d | 2017-05-09 A | 2017-06-06 A | 825EW12820, 825EW11200, 825EW12930, 825EW12540, 825EW10200 | 100% | 2017-05-31 | 2017-06-23 | External Works - Utilities Labor [1890 h] |  |  |  |  |  |  |  |
|  | 3 | **LANDSCAPING WORKS & REMAINING WORKS** |  | 2017-02-01 | 2017-06-30 |  |  |  |  |  |  |  |  |  |  |  |  |
| 8250EW3120 |  | Road Works, Drainages & Other External Works (Parking Bay North) | 36d | 2017-02-01 A | 2017-03-28 A | 8250EW0124 | 100% | 2017-04-19 | 2017-06-02 | External Works - Labor [3240 h] | H | Day 429 | Day 437 | CONS | 2590 | LAND | CP3 |
| 8250EW3110 |  | Road Furnitures, Signage, Road Marking & Street Lights (parking bay of VB to Castle Peak Road) | 36d | 2017-05-10 A | 2017-06-20 A | 825EW12860, 825EW10240, 825EW10790, 825EW12970, 825EW10365, 825EW10500, 825EW10650, 825EW11070, 825EW12580, 825EW11240, 825EW10930, 8250EW2440 | 100% | 2017-05-31 | 2017-07-12 |  |  |  |  |  |  |  |  |
| 8250EW4000 |  | Statutory Inspection | 30d | 2017-05-11 A | 2017-05-31 A | 8250EW3120 FF+18d, 8250EW3120 SS+18d, 8250EW3110 SS+18d, 8250EW3110 FF+18d | 100% | 2017-06-28 | 2017-08-02 | General Labor (Crew of 4) [5500 h] |  |  |  |  |  |  | CP3 |
| 8250LW1040 |  | Planting Trees, Shrubs, Climbers & Groundcovers at Locations as Indicated in Drawings | 60d | 2017-05-11 A | 2017-06-30 A | 8250VB2300, 8250BS2260, 8250BS2280 | 100% | 2017-05-31 | 2017-08-09 | Drilling Rig [1006.67 h]; Dump Truck [1006.67 h]; External Works - Labor [9000 h]; General Labor (Crew of 4) [1626.67 h] | H | Day 438 | Day 457 | CONS | 2590 | LAND |  |
| 8250LW1020 |  | Hydroseed on Slopes | 30d | 2017-06-26 A | 2017-06-30 A | 8250BS2115, 8250CC10500, 8250BS2225, 8250BS2240, 8250BS2555, 8250BS2255 FF+14d, 8250BS2275 FF+14d, 8250BS2320 FF+14d, 8250BS2280 FF+14d, 8250BS2260 FF+14d | 100% | 2017-06-30 | 2017-08-04 | External Works - Labor [2700 h] | H | Day 429 | Day 437 | CONS | 2590 | LAND |  |

## Activity codes

| Code | Value | Meaning |
| --- | --- | --- |
| 825 Location | 2000 | Decontamination Works |
| 825 Location | 2525 | Key Dates / Completion Obligations |
| 825 Location | 2530 | Works Area Access and Handover Dates |
| 825 Location | 2535 | MTR Project Milestone Dates |
| 825 Location | 2540 | Designated Contractors Access Dates |
| 825 Location | 2545 | Payment Milestone Dates |
| 825 Location | 2547 | Other Important Dates |
| 825 Location | 2548 | Coordinated Interface Dates with 824 and 826 |
| 825 Location | 2550 | Tunnel Boring Machine |
| 825 Location | 2555 | Tunnel Lining Segments |
| 825 Location | 2557 | Instrumentation |
| 825 Location | 2560 | TBM Launching Shaft |
| 825 Location | 2565 | Bored Tunnel North Bound |
| 825 Location | 2570 | Bored Tunnel South Bound |
| 825 Location | 2575 | Cross Passages |
| 825 Location | 2580 | Cut & Cover Tunnels |
| 825 Location | 2585 | Ventilation Building, Temp Access, Struts Removal & Backfill |
| 825 Location | 2590 | External Works |
| 825 Location | 2595 | Ground Treatment Works |
| 825 Location | 3130 | Barging Point at Siu Lam |
| 825 Location | 3150 | Additional Backfill to +7 mpD and Surcharge to +9.5 mPD |
| 825 Phase | CONS | Construction |
| 825 Phase | DEAP | Design and Approval |
| 825 Phase | OFAB | Offsite Fabrication |
| 825 Phase | PDAT | Project Dates |
| 825 Phase | SITE | Site Establishment |
| 825 Phase | SUBM | Submissions |
| 825 Sub-location | 1.1 | Area 1.1 |
| 825 Sub-location | 1.10 | Area 1.10 |
| 825 Sub-location | 1.11 | Area 1.11 |
| 825 Sub-location | 1.12 | Area 1.12 |
| 825 Sub-location | 1.13 | Area 1.13 |
| 825 Sub-location | 1.14 | Area 1.14 |
| 825 Sub-location | 1.15 | Area 1.15 |
| 825 Sub-location | 1.16 | Area 1.16 |
| 825 Sub-location | 1.17 | Area 1.17 |
| 825 Sub-location | 1.2 | Area 1.2 |
| 825 Sub-location | 1.20 | Area 1.20 |
| 825 Sub-location | 1.21 | Area 1.21 |
| 825 Sub-location | 1.3 | Area 1.3 |
| 825 Sub-location | 1.4A | Area 1.4A |
| 825 Sub-location | 1.4B | Area 1.4B |
| 825 Sub-location | 1.5 | Area 1.5 |
| 825 Sub-location | 1.6 | Area 1.6 |
| 825 Sub-location | 1.7 | Area 1.7 |
| 825 Sub-location | 1.8 | Area 1.8 |
| 825 Sub-location | 1.9 | Area 1.9 |
| 825 Sub-location | 826CID | Coordinated Interface Dates with 826 |
| 825 Sub-location | 826CON | 826 Construction and Site Works Adjacent to MPV |
| 825 Sub-location | AS | Temp. Access Shaft for 826 and 830 |
| 825 Sub-location | B1 | Bay 1 |
| 825 Sub-location | B2 | Bay 2 |
| 825 Sub-location | B3 | Bay3 |
| 825 Sub-location | B4 | Bay 4 |
| 825 Sub-location | B5 | Bay 5 |
| 825 Sub-location | B6 | Bay 6 |
| 825 Sub-location | B7 | Bay 7 |
| 825 Sub-location | B8 | Bay 8 |
| 825 Sub-location | BBR | Brackets |
| 825 Sub-location | BINV | Invert and Walkway |
| 825 Sub-location | BKIN | Bored Tunnel Break-in Area - from ground |
| 825 Sub-location | CP07 | CP7 |
| 825 Sub-location | CP08 | CP8 |
| 825 Sub-location | CP09 | CP9 |
| 825 Sub-location | CP151 | CP15 |
| 825 Sub-location | DCZ1 | Parts or All of Works Areas 1.3, 1.4B, 1.5, 1.6, 1.7 & 1.17 |
| 825 Sub-location | DCZ2 | Works Areas 1.1 & 1.19 |
| 825 Sub-location | DCZ3 | Works Areas 1.2 & 1.16 |
| 825 Sub-location | INTDES | 825/824 Stud Tunnel/Tunnel Joint Design |
| 825 Sub-location | LAND | Landscaping Work |
| 825 Sub-location | SEGD | Deliveries of Segments |
| 825 Sub-location | SEGP | Production of Segments |
| 825 Sub-location | STFB | San Tin Highway Footbridge - from ground |
| 825 Sub-location | TNN | Tunnel |
| 825 Sub-location | VB | Ventilation Building |
| 825 Sub-location | ZN02 | Zone 2 (as indicated in Drawing 825/W/320/OAP/T04/821) |
| 825 Sub-location | ZN03 | Zone 3 (as indicated in Drawing 825/W/320/OAP/T04/821) |
| 825 Sub-location | ZN04 | Zone 4 (as indicated in Drawing 825/W/320/OAP/T04/821) |
| 825 Sub-location | ZN06 | Zone 6 (as indicated in Drawing 825/W/320/OAP/T04/821) |
| Critical Path 1 and 2 | CP | Critical Path |
| Critical Path 1 and 2 | CP2 | Critical Path 2 |
| Critical Path 3 | CP3 | Critical Path 3 |
| Critical Path 4 | CP4 | Critical Path 4 |
| Updated Progress Status | Upd | Updated Activity |
