ID,Activity ID,Activity Name,Project ID,Project Name,Activity type,Parent WBS ID,Resources,Resource IDs,Primary Resource,Schedule % Complete,Activity Status,Planned Start,Actual Start,Planned Finish,Actual Finish,Predecessor Details,Predecessors,Successor Details,Successors,Project Week Planned Start,Project Week Actual Start,Project Week Planned Finish,Project Week Actual Finish,Project Month Planned Start,Project Month Actual Start,Project Month Planned Finish,Project Month Actual Finish,Activity nth Percentile Rank by Start Date,Total Float,Full Path,In Degree Original,Out Degree Original,Betweeness Centrality Original,Forward Reach Original,Reverse Reach Original,Duration Original,Critical Path Index Original,Page Rank Original,In Degree Normalized,Out Degree Normalized,Betweeness Centrality Normalized,Forward Reach Normalized,Reverse Reach Normalized,Duration Normalized,Critical Path Index Normalized,Page Rank Normalized
1,55902,"HK1003 -Blackpoint D2 - Rev.0E DD30092021",5121,"HK1003-Rev.0E-3",WBS,"26010",,,,,Active,01/08/2020,01/08/2020,31/12/2025,,,,,,0,0,282,,0,0,65,,,,""
1-1,SI---1P2A559,"DESIGN PHASE PIPING & SUPPORTS ON RACK LOT3",5121,"HK1003-Rev.0E-3",TT_Task,"55902",-,-,-,100,TK_Complete,06/08/2021,06/08/2021,02/09/2021,02/09/2021,"SI---1P2A558 FS,SI---1P2A554 FS,SI---1P2A553 FS,SI---1P2A552 FS,SI---1P2A551 FS,SI---1P2A550 FS","SI---1P2A558,SI---1P2A554,SI---1P2A553,SI---1P2A552,SI---1P2A551,SI---1P2A550","SI---1P2A556 FS,SI---1P2A555 FS","SI---1P2A556,SI---1P2A555",52,52,56,56,12,12,13,13,25,,"HK1003 -Blackpoint D2 - Rev.0E DD30092021"
1-2,SI---1P2A558,"DESIGN PHASE PIPING & SUPPORTS ON RACK LOT2",5121,"HK1003-Rev.0E-3",TT_Task,"55902",-,-,-,100,TK_Complete,09/07/2021,09/07/2021,05/08/2021,05/08/2021,"SI---1P2A557 FS,SI---1P2A548 FS,SI---1P2A547 FS,SI---1P2A546 FS,SI---1P2A545 FS,SI---1P2A544 FS","SI---1P2A557,SI---1P2A548,SI---1P2A547,SI---1P2A546,SI---1P2A545,SI---1P2A544","SI---1P2A559 FS,SI---1P2A523 FS,SI---1P2A549 FS","SI---1P2A559,SI---1P2A523,SI---1P2A549",48,48,52,52,11,11,12,12,21,,"HK1003 -Blackpoint D2 - Rev.0E DD30092021"
1-3,SI---1P2A557,"DESIGN PHASE PIPING & SUPPORTS ON RACK LOT1",5121,"HK1003-Rev.0E-3",TT_Task,"55902",-,-,-,100,TK_Complete,11/06/2021,11/06/2021,08/07/2021,08/07/2021,"SI---1P2A542 FS,SI---1P2A541 FS,SI---1P2A540 FS,SI---1P2A539 FS,SI---1P2A538 FS","SI---1P2A542,SI---1P2A541,SI---1P2A540,SI---1P2A539,SI---1P2A538","SI---1P2A558 FS,SI---1P2A525 FS,SI---1P2A543 FS","SI---1P2A558,SI---1P2A525,SI---1P2A543",44,44,48,48,10,10,11,11,16,,"HK1003 -Blackpoint D2 - Rev.0E DD30092021"
1-4,SI---1P2A556,"FABRICATION ISOMETRICS ON RACK LOT3",5121,"HK1003-Rev.0E-3",TT_Task,"55902",-,-,-,93,TK_Active,03/09/2021,03/09/2021,01/10/2021,,"SI---1P2A559 FS","SI---1P2A559","SI20---3B51 FS","SI20---3B51",56,56,60,,13,13,14,,28,1264,"HK1003 -Blackpoint D2 - Rev.0E DD30092021"
1-5,SI---1P2A555,"PIPE SUPPORTS DOCUMENTATION ON RACK LOT3",5121,"HK1003-Rev.0E-3",TT_Task,"55902",-,-,-,93,TK_Active,03/09/2021,03/09/2021,01/10/2021,,"SI---1P2A559 FS","SI---1P2A559","SI20---3B51 FS","SI20---3B51",56,56,60,,13,13,14,,28,1264,"HK1003 -Blackpoint D2 - Rev.0E DD30092021"
1-6,SI---1P2A554,"(M2) LOT3-GR.5(ZTB,ZTM-MAV,ZTM-MAW,ZTE/ZTP)(FInal Data for Piping design needed)",5121,"HK1003-Rev.0E-3",TT_FinMile,"55902",-,-,-,100,TK_Complete,10/06/2021,10/06/2021,10/06/2021,10/06/2021,"SI---1P2A553 FS","SI---1P2A553","SI---1P2A559 FS","SI---1P2A559",44,44,44,44,10,10,10,10,16,,"HK1003 -Blackpoint D2 - Rev.0E DD30092021"
1-7,SI---1P2A553,"(M2) LOT3-GR.4(GHD,GKB,GMx,QFB,SCB,SGA,MAA/B/C)(FInal Data for Piping design needed)",5121,"HK1003-Rev.0E-3",TT_FinMile,"55902",-,-,-,100,TK_Complete,03/06/2021,03/06/2021,03/06/2021,03/06/2021,"SI---1P2A552 FS","SI---1P2A552","SI---1P2A554 FS,SI---1P2A559 FS","SI---1P2A554,SI---1P2A559",43,43,43,43,10,10,10,10,15,,"HK1003 -Blackpoint D2 - Rev.0E DD30092021"
1-8,SI---1P2A552,"(M2) LOT3-GR.3(MAJ,MAN,MAV,LCW,MAX,LCE,GHC,HSJ)(FInal Data for Piping design needed)",5121,"HK1003-Rev.0E-3",TT_FinMile,"55902",-,-,-,100,TK_Complete,20/05/2021,20/05/2021,20/05/2021,20/05/2021,"SI---1P2A551 FS","SI---1P2A551","SI---1P2A553 FS,SI---1P2A559 FS","SI---1P2A553,SI---1P2A559",41,41,41,41,9,9,9,9,13,,"HK1003 -Blackpoint D2 - Rev.0E DD30092021"
1-9,SI---1P2A551,"(M2) LOT3-GR.2(EKT,EKG,LCA10,LCA30,LCL,LDK10,MAG,MAG50,MAW,MAM,MAL)(FInal Data for Piping design needed)",5121,"HK1003-Rev.0E-3",TT_FinMile,"55902",-,-,-,100,TK_Complete,06/05/2021,06/05/2021,06/05/2021,06/05/2021,"SI---1P2A550 FS","SI---1P2A550","SI---1P2A552 FS,SI---1P2A559 FS","SI---1P2A552,SI---1P2A559",39,39,39,39,9,9,9,9,11,,"HK1003 -Blackpoint D2 - Rev.0E DD30092021"
1-10,SI---1P2A550,"(M2) LOT3-GR.1(ZTB,ZTM-MAV,ZTM-MAW,ZTE/ZTP)(FInal Data for Piping design needed)",5121,"HK1003-Rev.0E-3",TT_FinMile,"55902",-,-,-,100,TK_Complete,22/04/2021,22/04/2021,22/04/2021,22/04/2021,"SI---1P2A544 FS","SI---1P2A544","SI---1P2A551 FS,SI---1P2A559 FS","SI---1P2A551,SI---1P2A559",37,37,37,37,8,8,8,8,9,,"HK1003 -Blackpoint D2 - Rev.0E DD30092021"
1-11,SI---1P2A549,"FABRICATION ISOMETRICS ON RACK LOT2",5121,"HK1003-Rev.0E-3",TT_Task,"55902",-,-,-,100,TK_Complete,06/08/2021,06/08/2021,01/09/2021,01/09/2021,"SI---1P2A558 FS","SI---1P2A558","SI20---3B44 FS","SI20---3B44",52,52,56,56,12,12,13,13,25,,"HK1003 -Blackpoint D2 - Rev.0E DD30092021"
1-12,SI---1P2A548,"(M2) LOT2-GR.5(ZTB,ZTM-MAV,ZTM-MAW,ZTE/ZTP)(FInal Data for Piping design needed)",5121,"HK1003-Rev.0E-3",TT_FinMile,"55902",-,-,-,100,TK_Complete,10/06/2021,10/06/2021,10/06/2021,10/06/2021,"SI---1P2A547 FS","SI---1P2A547","SI---1P2A558 FS","SI---1P2A558",44,44,44,44,10,10,10,10,16,,"HK1003 -Blackpoint D2 - Rev.0E DD30092021"
1-13,SI---1P2A547,"(M2) LOT2-GR.4(GHD,GKB,GMx,QFB,SCB,SGA,MAA/B/C)(FInal Data for Piping design needed)",5121,"HK1003-Rev.0E-3",TT_FinMile,"55902",-,-,-,100,TK_Complete,03/06/2021,03/06/2021,03/06/2021,03/06/2021,"SI---1P2A546 FS","SI---1P2A546","SI---1P2A548 FS,SI---1P2A558 FS","SI---1P2A548,SI---1P2A558",43,43,43,43,10,10,10,10,15,,"HK1003 -Blackpoint D2 - Rev.0E DD30092021"
1-14,SI---1P2A546,"(M2) LOT2-GR.3(MAJ,MAN,MAV,LCW,MAX,LCE,GHC,HSJ)(FInal Data for Piping design needed)",5121,"HK1003-Rev.0E-3",TT_FinMile,"55902",-,-,-,100,TK_Complete,20/05/2021,20/05/2021,20/05/2021,20/05/2021,"SI---1P2A545 FS","SI---1P2A545","SI---1P2A547 FS,SI---1P2A558 FS","SI---1P2A547,SI---1P2A558",41,41,41,41,9,9,9,9,13,,"HK1003 -Blackpoint D2 - Rev.0E DD30092021"
1-15,SI---1P2A545,"(M2) LOT2-GR.2(EKT,EKG,LCA10,LCA30,LCL,LDK10,MAG,MAG50,MAW,MAM,MAL)(FInal Data for Piping design needed)",5121,"HK1003-Rev.0E-3",TT_FinMile,"55902",-,-,-,100,TK_Complete,06/05/2021,06/05/2021,06/05/2021,06/05/2021,"SI---1P2A544 FS","SI---1P2A544","SI---1P2A546 FS,SI---1P2A558 FS","SI---1P2A546,SI---1P2A558",39,39,39,39,9,9,9,9,11,,"HK1003 -Blackpoint D2 - Rev.0E DD30092021"
1-16,SI---1P2A544,"(M2) LOT2-GR.1(ZTB,ZTM-MAV,ZTM-MAW,ZTE/ZTP)(FInal Data for Piping design needed)",5121,"HK1003-Rev.0E-3",TT_FinMile,"55902",-,-,-,100,TK_Complete,22/04/2021,22/04/2021,22/04/2021,22/04/2021,"SI---1P2A538 FS","SI---1P2A538","SI---1P2A550 FS,SI---1P2A545 FS,SI---1P2A558 FS","SI---1P2A550,SI---1P2A545,SI---1P2A558",37,37,37,37,8,8,8,8,9,,"HK1003 -Blackpoint D2 - Rev.0E DD30092021"
1-17,SI---1P2A543,"FABRICATION ISOMETRICS ON RACK LOT1",5121,"HK1003-Rev.0E-3",TT_Task,"55902",-,-,-,100,TK_Complete,09/07/2021,09/07/2021,01/08/2021,01/08/2021,"SI---1P2A557 FS","SI---1P2A557","SI20-1P340 FS","SI20-1P340",48,48,52,52,11,11,12,12,21,,"HK1003 -Blackpoint D2 - Rev.0E DD30092021"
1-18,SI---1P2A542,"(M2) LOT1-GR.5(ZTB,ZTM-MAV,ZTM-MAW,ZTE/ZTP)(FInal Data for Piping design needed)",5121,"HK1003-Rev.0E-3",TT_FinMile,"55902",-,-,-,100,TK_Complete,10/06/2021,10/06/2021,10/06/2021,10/06/2021,"SI---1P2A541 FS","SI---1P2A541","SI---1P2A557 FS","SI---1P2A557",44,44,44,44,10,10,10,10,16,,"HK1003 -Blackpoint D2 - Rev.0E DD30092021"
1-19,SI---1P2A541,"(M2) LOT1-GR.4(GHD,GKB,GMx,QFB,SCB,SGA,MAA/B/C)(FInal Data for Piping design needed)",5121,"HK1003-Rev.0E-3",TT_FinMile,"55902",-,-,-,100,TK_Complete,03/06/2021,03/06/2021,03/06/2021,03/06/2021,"SI---1P2A540 FS","SI---1P2A540","SI---1P2A542 FS,SI---1P2A557 FS","SI---1P2A542,SI---1P2A557",43,43,43,43,10,10,10,10,15,,"HK1003 -Blackpoint D2 - Rev.0E DD30092021"
1-20,SI---1P2A540,"(M2) LOT1-GR.3(MAJ,MAN,MAV,LCW,MAX,LCE,GHC,HSJ)(FInal Data for Piping design needed)",5121,"HK1003-Rev.0E-3",TT_FinMile,"55902",-,-,-,100,TK_Complete,20/05/2021,20/05/2021,20/05/2021,20/05/2021,"SI---1P2A539 FS","SI---1P2A539","SI---1P2A541 FS,SI---1P2A557 FS","SI---1P2A541,SI---1P2A557",41,41,41,41,9,9,9,9,13,,"HK1003 -Blackpoint D2 - Rev.0E DD30092021"
1-21,SI---1P2A539,"(M2) LOT1-GR.2(EKT,EKG,LCA10,LCA30,LCL,LDK10,MAG,MAG50,MAW,MAM,MAL)(FInal Data for Piping design needed)",5121,"HK1003-Rev.0E-3",TT_FinMile,"55902",-,-,-,100,TK_Complete,06/05/2021,06/05/2021,06/05/2021,06/05/2021,"SI---1P2A538 FS","SI---1P2A538","SI---1P2A540 FS,SI---1P2A557 FS","SI---1P2A540,SI---1P2A557",39,39,39,39,9,9,9,9,11,,"HK1003 -Blackpoint D2 - Rev.0E DD30092021"
1-22,SI---1P2A538,"(M2) LOT1-GR.1(LAB,LBX,PAB10,PAB20)(FInal Data for Piping design needed)",5121,"HK1003-Rev.0E-3",TT_FinMile,"55902",-,-,-,100,TK_Complete,22/04/2021,22/04/2021,22/04/2021,22/04/2021,"SI---1P2A536 FS","SI---1P2A536","SI---1P2A544 FS,SI---1P2A539 FS,SI---1P2A557 FS","SI---1P2A544,SI---1P2A539,SI---1P2A557",37,37,37,37,8,8,8,8,9,,"HK1003 -Blackpoint D2 - Rev.0E DD30092021"
1-23,SI---1P2A537,"(M2) LOT7-GR.4(GHD,GKB,GMx,QFB,SCB,SGA,MAA/B/C)(FInal Data for Piping design needed)",5121,"HK1003-Rev.0E-3",TT_FinMile,"55902",-,-,-,100,TK_Complete,03/06/2021,03/06/2021,03/06/2021,03/06/2021,"SI---1P2A536 FS","SI---1P2A536","SI---1P2A515 FS","SI---1P2A515",43,43,43,43,10,10,10,10,15,,"HK1003 -Blackpoint D2 - Rev.0E DD30092021"
1-24,SI---1P2A536,"(M2) LOT7-GR.1(LAB,LBX,PAB10,PAB20)(FInal Data for Piping design needed)",5121,"HK1003-Rev.0E-3",TT_FinMile,"55902",-,-,-,100,TK_Complete,22/04/2021,22/04/2021,22/04/2021,22/04/2021,"SI---1P2A531 FS","SI---1P2A531","SI---1P2A538 FS,SI---1P2A537 FS,SI---1P2A515 FS","SI---1P2A538,SI---1P2A537,SI---1P2A515",37,37,37,37,8,8,8,8,9,,"HK1003 -Blackpoint D2 - Rev.0E DD30092021"
1-25,SI---1P2A535,"(M2) LOT6-GR.5(ZTB,ZTM-MAV,ZTM-MAW,ZTE/ZTP)(FInal Data for Piping design needed)",5121,"HK1003-Rev.0E-3",TT_FinMile,"55902",-,-,-,100,TK_Complete,10/06/2021,10/06/2021,10/06/2021,10/06/2021,"SI---1P2A534 FS","SI---1P2A534","SI---1P2A526 FS","SI---1P2A526",44,44,44,44,10,10,10,10,16,,"HK1003 -Blackpoint D2 - Rev.0E DD30092021"
1-26,SI---1P2A534,"(M2) LOT6-GR.4(GHD,GKB,GMx,QFB,SCB,SGA,MAA/B/C)(FInal Data for Piping design needed)",5121,"HK1003-Rev.0E-3",TT_FinMile,"55902",-,-,-,100,TK_Complete,03/06/2021,03/06/2021,03/06/2021,03/06/2021,"SI---1P2A533 FS","SI---1P2A533","SI---1P2A535 FS,SI---1P2A526 FS","SI---1P2A535,SI---1P2A526",43,43,43,43,10,10,10,10,15,,"HK1003 -Blackpoint D2 - Rev.0E DD30092021"
1-27,SI---1P2A533,"(M2) LOT6-GR.3(MAJ,MAN,MAV,LCW,MAX,LCE,GHC,HSJ)(FInal Data for Piping design needed)",5121,"HK1003-Rev.0E-3",TT_FinMile,"55902",-,-,-,100,TK_Complete,20/05/2021,20/05/2021,20/05/2021,20/05/2021,"SI---1P2A532 FS","SI---1P2A532","SI---1P2A534 FS,SI---1P2A526 FS","SI---1P2A534,SI---1P2A526",41,41,41,41,9,9,9,9,13,,"HK1003 -Blackpoint D2 - Rev.0E DD30092021"
1-28,SI---1P2A532,"(M2) LOT6-GR.2(EKT,EKG,LCA10,LCA30,LCL,LDK10,MAG,MAG50,MAW,MAM,MAL)(FInal Data for Piping design needed)",5121,"HK1003-Rev.0E-3",TT_FinMile,"55902",-,-,-,100,TK_Complete,06/05/2021,06/05/2021,06/05/2021,06/05/2021,"SI---1P2A531 FS","SI---1P2A531","SI---1P2A533 FS,SI---1P2A526 FS","SI---1P2A533,SI---1P2A526",39,39,39,39,9,9,9,9,11,,"HK1003 -Blackpoint D2 - Rev.0E DD30092021"
1-29,SI---1P2A531,"(M2) LOT6-GR.1(LAB,LBx,PAB10,PAB20)(FInal Data for Piping design needed)",5121,"HK1003-Rev.0E-3",TT_FinMile,"55902",-,-,-,100,TK_Complete,22/04/2021,22/04/2021,22/04/2021,22/04/2021,"SI---1P2A513 FS","SI---1P2A513","SI---1P2A536 FS,SI---1P2A532 FS,SI---1P2A526 FS","SI---1P2A536,SI---1P2A532,SI---1P2A526",37,37,37,37,8,8,8,8,9,,"HK1003 -Blackpoint D2 - Rev.0E DD30092021"
1-30,SI---1P2A530,"(M2) LOT5-GR.5(ZTB,ZTM-MAV,ZTM-MAW,ZTE/ZTP)(FInal Data for Piping design needed)",5121,"HK1003-Rev.0E-3",TT_FinMile,"55902",-,-,-,100,TK_Complete,10/06/2021,10/06/2021,10/06/2021,10/06/2021,"SI---1P2A520 FS,SI--G--2-35 FS,SI20TPF2A2-5 FS,SI20TPF1C2-5 FS,SI20TPF1B2-5 FS,SI20TPF1A2-5 FS,SI20TPC9A2-5 FS,SI20TPC8A2-5 FS,SI20TPC7A2-5 FS,SI20TPC6A2-5 FS,SI20TPC5A2-5 FS,SI20TPC4A2-5 FS,SI20TPC3A2-5 FS,SI20TPC2A2-5 FS,SI20TPC1A2-5 FS,SI20TPC10A2-5 FS","SI---1P2A520,SI--G--2-35,SI20TPF2A2-5,SI20TPF1C2-5,SI20TPF1B2-5,SI20TPF1A2-5,SI20TPC9A2-5,SI20TPC8A2-5,SI20TPC7A2-5,SI20TPC6A2-5,SI20TPC5A2-5,SI20TPC4A2-5,SI20TPC3A2-5,SI20TPC2A2-5,SI20TPC1A2-5,SI20TPC10A2-5","SI---1P2A521 FS,SI---1P2A521 FF,SI-P222-169 FS,SI-P222-170 FS","SI---1P2A521,SI---1P2A521,SI-P222-169,SI-P222-170",44,44,44,44,10,10,10,10,16,,"HK1003 -Blackpoint D2 - Rev.0E DD30092021"
1-31,SI---1P2A529,"(M2) LOT4-Gr.3(MAJ,MAN,MAV,LCW,MAX,LCE,GHC,HSJ)(Final P&ID's)",5121,"HK1003-Rev.0E-3",TT_FinMile,"55902",-,-,-,100,TK_Complete,20/05/2021,20/05/2021,20/05/2021,20/05/2021,"SI---1P2A528 FS,SI--L--2-35 FS,SI--P--2-35 FS","SI---1P2A528,SI--L--2-35,SI--P--2-35","SI---1P2A520 FS,SI---1P2A512 FS","SI---1P2A520,SI---1P2A512",41,41,41,41,9,9,9,9,13,,"HK1003 -Blackpoint D2 - Rev.0E DD30092021"
1-32,SI---1P2A528,"(M2) LOT4-Gr.2(EKT,EKG,LCA10,LCA30,LCL,LDK10,MAG,MAG50,MAW,MAM,MAL)(Final P&ID's)",5121,"HK1003-Rev.0E-3",TT_FinMile,"55902",-,-,-,100,TK_Complete,31/05/2021,31/05/2021,31/05/2021,31/05/2021,"SI---1P2A513 FS,SI--L--2-35 FS,SI--P--2-35 FS","SI---1P2A513,SI--L--2-35,SI--P--2-35","SI---1P2A529 FS,SI---1P2A512 FF","SI---1P2A529,SI---1P2A512",43,43,43,43,10,10,10,10,15,,"HK1003 -Blackpoint D2 - Rev.0E DD30092021"
1-33,SI--HA-2-94&,"FULL ENGINEERING RELEASE HRSG FOR BUILDING BLOCK ENGINEERING (no Hardware Order before NTP)",5121,"HK1003-Rev.0E-3",TT_Mile,"55902",-,-,-,100,TK_Complete,13/11/2020,13/11/2020,13/11/2020,13/11/2020,"SI-----1-01 FS","SI-----1-01","SI--HA-2-94 FS","SI--HA-2-94",14,14,14,14,3,3,3,3,0,,"HK1003 -Blackpoint D2 - Rev.0E DD30092021"
1-34,SI--C--2E87,"2. Order PLACED of BOP I&C CABLES (CONTRACT INTO FORCE) (LOT2)",5121,"HK1003-Rev.0E-3",TT_Mile,"55902",-,-,-,0,TK_NotStart,25/12/2021,,25/12/2021,,"SI--C--2E85 SS","SI--C--2E85","SI--C--3E84 SS","SI--C--3E84",73,,73,,17,,17,,43,1776,"HK1003 -Blackpoint D2 - Rev.0E DD30092021"
1-35,SI--CP-4-30,"TRANSPORT BOP I&C CABLES (LOT2)",5121,"HK1003-Rev.0E-3",TT_Task,"55902",-,-,-,0,TK_NotStart,11/12/2022,,04/02/2023,,"SI--C--3E85 FS","SI--C--3E85","SI20BZK4-42 FS","SI20BZK4-42",123,,131,,28,,30,,86,32,"HK1003 -Blackpoint D2 - Rev.0E DD30092021"
1-36,SI--C--4-14,"LOGISTICS AND CUSTOMS PREPARATION BOP I&C CABLES (LOT2)",5121,"HK1003-Rev.0E-3",TT_Task,"55902",-,-,-,0,TK_NotStart,09/04/2022,,06/05/2022,,"SI--C--3-74 FS","SI--C--3-74","SI--C--3E85 FS","SI--C--3E85",88,,91,,20,,21,,57,1776,"HK1003 -Blackpoint D2 - Rev.0E DD30092021"
1-37,SI--C--3-74,"TIMES OF COMPLETION (FINAL DATA IN KANLOG) BOP I&C CABLES (LOT2)",5121,"HK1003-Rev.0E-3",TT_FinMile,"55902",-,-,-,0,TK_NotStart,08/04/2022,,08/04/2022,,"SI--C--3E84 FS","SI--C--3E84","SI--C--4-14 FS","SI--C--4-14",87,,87,,20,,20,,56,1776,"HK1003 -Blackpoint D2 - Rev.0E DD30092021"
1-38,SI--C--3E84,"DETAIL DESIGN / MANUFACTURING/ SHOP TEST FOR BOP I&C CABLES (LOT2)",5121,"HK1003-Rev.0E-3",TT_Task,"55902",-,-,-,0,TK_NotStart,25/12/2021,,08/04/2022,,"SI--C--2E87 SS","SI--C--2E87","SI--C--3-74 FS","SI--C--3-74",73,,87,,17,,20,,43,1776,"HK1003 -Blackpoint D2 - Rev.0E DD30092021"
1-39,SI--C--3E85,"(RFS) READY FOR SHIPMENT BOP I&C CABLES (LOT2)",5121,"HK1003-Rev.0E-3",TT_FinMile,"55902",-,-,-,0,TK_NotStart,06/05/2022,,06/05/2022,,"SI--C--4-14 FS","SI--C--4-14","SI--CP-4-30 FS","SI--CP-4-30",91,,91,,21,,21,,63,1776,"HK1003 -Blackpoint D2 - Rev.0E DD30092021"
1-40,SI20BZK4-42,"(OTD-OS) ON SITE I&C CABLES 20/00BZK (LOT2)",5121,"HK1003-Rev.0E-3",TT_FinMile,"55902",-,-,-,0,TK_NotStart,04/02/2023,,04/02/2023,,"SI--CP-4-30 FS","SI--CP-4-30","SI20CFE7A25 FS,SI20BZK7F25 FS,SI20BZK7B28 FF","SI20CFE7A25,SI20BZK7F25,SI20BZK7B28",131,,131,,30,,30,,89,32,"HK1003 -Blackpoint D2 - Rev.0E DD30092021"
1-41,SI--C--2E85,"1. Order PLACED of BOP I&C CABLES (CONTRACT INTO FORCE) (LOT1)",5121,"HK1003-Rev.0E-3",TT_Mile,"55902",-,-,-,0,TK_NotStart,16/10/2021,,16/10/2021,,"SI--C--2E84 FS","SI--C--2E84","SI--C--2E87 SS,SI--C--3E28 SS","SI--C--2E87,SI--C--3E28",63,,63,,14,,14,,34,1352,"HK1003 -Blackpoint D2 - Rev.0E DD30092021"
1-42,SI--C--2E84,"Order of BOP I&C CABLES (PREPARATION RFQ/QUOTATION STAGE)",5121,"HK1003-Rev.0E-3",TT_Task,"55902",-,-,-,67,TK_Active,28/08/2021,28/08/2021,15/10/2021,,"SI--C--3E27 SS,SI--B--2A56 FS,SI--C--2C55 FS","SI--C--3E27,SI--B--2A56,SI--C--2C55","SI--C--2E85 FS","SI--C--2E85",56,56,62,,13,13,14,,27,1352,"HK1003 -Blackpoint D2 - Rev.0E DD30092021"
1-43,SI--C--2B83,"(DF) HANDOVER T3000 DB complete and hand over",5121,"HK1003-Rev.0E-3",TT_FinMile,"55902",-,-,-,0,TK_NotStart,25/09/2022,,25/09/2022,,"SP--CJP2-39 FS,SI--C--2-44 FS,SI--C--2B80 FS,SI--G--2-88 FS,SI--P--2-80 FS,SI--L--2-79 FS,SI--HA-2-00 FS,SP--CJJ2-38 FS,SI--C--2B35 FS,SP--CJP2-38 FS,SI--C--2-55 FS","SP--CJP2-39,SI--C--2-44,SI--C--2B80,SI--G--2-88,SI--P--2-80,SI--L--2-79,SI--HA-2-00,SP--CJJ2-38,SI--C--2B35,SP--CJP2-38,SI--C--2-55","SI--BRU8-21 FS,SI20BU-8-25 FS,SI20UBA8G26 FS","SI--BRU8-21,SI20BU-8-25,SI20UBA8G26",112,,112,,26,,26,,82,1144,"HK1003 -Blackpoint D2 - Rev.0E DD30092021"
1-44,SI--C--2C71,"(DF) T3000 Software ready",5121,"HK1003-Rev.0E-3",TT_Mile,"55902",-,-,-,0,TK_NotStart,01/08/2022,,01/08/2022,,"SI--C--2B82 FS,SI--C--2D56 FS,SI--C--2B35 FS,SI--C--2-41 FS,SI--C--2-40 FS","SI--C--2B82,SI--C--2D56,SI--C--2B35,SI--C--2-41,SI--C--2-40","SI--C--2B80 FS","SI--C--2B80",104,,104,,24,,24,,76,1144,"HK1003 -Blackpoint D2 - Rev.0E DD30092021"
1-45,SI--C--2B82,"SW ENGINEERING BOP I&C, T3000 DB MERGING non Fail Safe",5121,"HK1003-Rev.0E-3",TT_Task,"55902",-,-,-,0,TK_NotStart,26/12/2021,,21/05/2022,,"SI--C--2B35 FS,SI--C--2-55 FS","SI--C--2B35,SI--C--2-55","SI--C--2C71 FS,SI--C--2B80 FS,SI--C--2D56 FF","SI--C--2C71,SI--C--2B80,SI--C--2D56",73,,94,,17,,21,,43,1712,"HK1003 -Blackpoint D2 - Rev.0E DD30092021"
1-46,SI--C--2B81,"Filling Meas/Consumer list IC tasks",5121,"HK1003-Rev.0E-3",TT_Task,"55902",-,-,-,100,TK_Complete,26/03/2021,26/03/2021,15/07/2021,15/07/2021,"SI--C--2-77 FS","SI--C--2-77","SI--C--2C50 SS","SI--C--2C50",33,33,49,49,7,7,11,11,6,,"HK1003 -Blackpoint D2 - Rev.0E DD30092021"
1-47,SI--LOG4-10,"START FIRST SHIPMENTS BY LOGISTICS CONTRACTOR",5121,"HK1003-Rev.0E-3",TT_Mile,"55902",-,-,-,100,TK_Complete,14/07/2021,14/07/2021,14/07/2021,14/07/2021,"SI--LOG2-80 FS","SI--LOG2-80","SI20UMC2B-45 FS","SI20UMC2B-45",49,49,49,49,11,11,11,11,21,,"HK1003 -Blackpoint D2 - Rev.0E DD30092021"
1-48,SI--LOG2-40,"REVIEW OF QUOTATIONS & PREPARATION OF BID COMPARISON SHEET LOGISTICS CONTRACT",5121,"HK1003-Rev.0E-3",TT_Task,"55902",-,-,-,100,TK_Complete,16/04/2021,16/04/2021,06/05/2021,06/05/2021,"SI--LOG2-30 FS,SI--3331-36 FS","SI--LOG2-30,SI--3331-36","SI--LOG2-50 FS","SI--LOG2-50",36,36,39,39,8,8,9,9,8,,"HK1003 -Blackpoint D2 - Rev.0E DD30092021"
1-49,SI--LOG4-30,"START FIRST TRANSPORT TO SITE (HEAVY LOADS)",5121,"HK1003-Rev.0E-3",TT_Mile,"55902",-,-,-,0,TK_NotStart,08/12/2021,,08/12/2021,,"SI--LOG4-20 FS,SI--LOG2-80 FS,SI--2222-32 SS","SI--LOG4-20,SI--LOG2-80,SI--2222-32","SI20MAG4-25 FS,SP20MA-4C25 FS,SI20MA-4-25 FS,SI20MKA4-25 FS,SI20BAT4-25 FS,SI20BBT4-25 FS,SI20MBA4-26 FS,SI20HA-4G25 FS,SI20HB-4A26 FS","SI20MAG4-25,SP20MA-4C25,SI20MA-4-25,SI20MKA4-25,SI20BAT4-25,SI20BBT4-25,SI20MBA4-26,SI20HA-4G25,SI20HB-4A26",70,,70,,16,,16,,41,136,"HK1003 -Blackpoint D2 - Rev.0E DD30092021"
1-50,SI--LOG2-80,"CONTRACT INTO FORCE TRANSPORT & LOGISTICS",5121,"HK1003-Rev.0E-3",TT_Mile,"55902",-,-,-,100,TK_Complete,11/06/2021,11/06/2021,11/06/2021,11/06/2021,"SI--LOG2-70 FS","SI--LOG2-70","SI--LOG4-10 FS,SI--LOG4-30 FS,SI--LOG4-20 FS","SI--LOG4-10,SI--LOG4-30,SI--LOG4-20",44,44,44,44,10,10,10,10,16,,"HK1003 -Blackpoint D2 - Rev.0E DD30092021"
1-51,SI--LOG2-70,"CONTRACT AWARD LOGISTICS CONTRACT (SOURCING BOARD / FINAL CONTRACT DOCUMENTS)",5121,"HK1003-Rev.0E-3",TT_Task,"55902",-,-,-,100,TK_Complete,28/05/2021,28/05/2021,10/06/2021,10/06/2021,"SI--LOG2-60 FS","SI--LOG2-60","SI--LOG2-80 FS","SI--LOG2-80",42,42,44,44,10,10,10,10,14,,"HK1003 -Blackpoint D2 - Rev.0E DD30092021"
1-52,SI--LOG2-10,"RECEIVE COLLI LIST (INCL. SOURCING CONCEPT / INCOTERMS)",5121,"HK1003-Rev.0E-3",TT_FinMile,"55902",-,-,-,100,TK_Complete,25/02/2021,25/02/2021,25/02/2021,25/02/2021,"SI-----1-05 FS","SI-----1-05","SI--LOG2-20 FS","SI--LOG2-20",29,29,29,29,6,6,6,6,5,,"HK1003 -Blackpoint D2 - Rev.0E DD30092021"
1-53,SI--LOG2-50,"SHORTLIST READY FOR LOGISTICS CONTRACT",5121,"HK1003-Rev.0E-3",TT_Mile,"55902",-,-,-,100,TK_Complete,07/05/2021,07/05/2021,07/05/2021,07/05/2021,"SI--LOG2-40 FS","SI--LOG2-40","SI20MB-6-00 FS,SI20MA-6B00 FS,SI20MBR6-15 FS,SI20MA-6-03 FS,SI20MAW6-16 FS,SI20MAV6-15 FS,SI--LOG2-60 FS","SI20MB-6-00,SI20MA-6B00,SI20MBR6-15,SI20MA-6-03,SI20MAW6-16,SI20MAV6-15,SI--LOG2-60",39,39,39,39,9,9,9,9,11,,"HK1003 -Blackpoint D2 - Rev.0E DD30092021"
1-54,SI--LOG2-30,"QUOTATION STAGE LOGISTICS CONTRACT",5121,"HK1003-Rev.0E-3",TT_Task,"55902",-,-,-,100,TK_Complete,19/03/2021,19/03/2021,15/04/2021,15/04/2021,"SI--LOG2-20 FS","SI--LOG2-20","SI--LOG2-40 FS","SI--LOG2-40",32,32,36,36,7,7,8,8,6,,"HK1003 -Blackpoint D2 - Rev.0E DD30092021"
1-55,SI--LOG2-20,"PREPARATION RFQ LOGISTICS CONTRACT",5121,"HK1003-Rev.0E-3",TT_Task,"55902",-,-,-,100,TK_Complete,26/02/2021,26/02/2021,18/03/2021,18/03/2021,"SI--LOG2-10 FS,SI-----1-05 FS","SI--LOG2-10,SI-----1-05","SI--LOG2-30 FS,SI--3331-36 FS","SI--LOG2-30,SI--3331-36",29,29,32,32,6,6,7,7,5,,"HK1003 -Blackpoint D2 - Rev.0E DD30092021"
1-56,SI--LOG2-60,"CONTRACTUAL CLARIFICATION, QUALIFICATION AND FINAL EVALUATION",5121,"HK1003-Rev.0E-3",TT_Task,"55902",-,-,-,100,TK_Complete,07/05/2021,07/05/2021,27/05/2021,27/05/2021,"SI--LOG2-50 FS","SI--LOG2-50","SI--LOG2-70 FS","SI--LOG2-70",39,39,42,42,9,9,9,9,11,,"HK1003 -Blackpoint D2 - Rev.0E DD30092021"
1-57,SI--LOG4-20,"PREPARATION PERIOD FOR LOGISTICS CONTRACTOR (HEAVY LOADS)",5121,"HK1003-Rev.0E-3",TT_Task,"55902",-,-,-,62,TK_Active,11/06/2021,11/06/2021,07/12/2021,,"SI--LOG2-80 FS,SI--2222-32 SS","SI--LOG2-80,SI--2222-32","SI--LOG4-30 FS","SI--LOG4-30",44,44,70,,10,10,16,,16,136,"HK1003 -Blackpoint D2 - Rev.0E DD30092021"
1-58,SI--PEI7-20,"START I&C ERECTION WORKS ON SITE",5121,"HK1003-Rev.0E-3",TT_Mile,"55902",-,-,-,0,TK_NotStart,06/07/2022,,06/07/2022,,"SI--2222-32 SS","SI--2222-32","SI20MBL7-25 FS,SI20C--7B15 FS,SI20BZK7B24 FS,SI20UBA7-16 FS,SI20BZK7D25 FS,SI20UBA7-104 FS,SI20UBA7-25 SS,SI20UBA7-15 SS,SI20UBA7-17 FS,SI20BZP7-140 FS,SI20UBA7-25 FS,SI20UBA7-15 FS,SI20BZK7B26 FS,SI--BRU8-22 FS,SI20CR-8-10 FS,SI20UBA8-12 FS,SI--2226-55 FS,SI--2222-35 FS","SI20MBL7-25,SI20C--7B15,SI20BZK7B24,SI20UBA7-16,SI20BZK7D25,SI20UBA7-104,SI20UBA7-25,SI20UBA7-15,SI20UBA7-17,SI20BZP7-140,SI20UBA7-25,SI20UBA7-15,SI20BZK7B26,SI--BRU8-22,SI20CR-8-10,SI20UBA8-12,SI--2226-55,SI--2222-35",100,,100,,23,,23,,72,592,"HK1003 -Blackpoint D2 - Rev.0E DD30092021"
1-59,SI--PEE7-20,"START ELECTRICAL ERECTION WORKS ON SITE",5121,"HK1003-Rev.0E-3",TT_Mile,"55902",-,-,-,0,TK_NotStart,28/03/2022,,28/03/2022,,"SI--2222-32 SS,SI--2227-68 FS,SI20E--7-5& FS","SI--2222-32,SI--2227-68,SI20E--7-5&","SI20BZP7-125 FS,SI20BZK7-130 FS,SI20BZP7-95 FS,SI20BZP7-135 FS,SI20BZP7-140 FS,SI20BZP7-60 FS,SI20BZP7-100 FS,SI20BZP7-110 FS,SI20BZP7-145 FS,SI20BZP7-80 FS,SI20BZP7-15 FS,SI20BZP7-20 FS,SI20BZP7-85 FS,SI20BZP7-115 FS,SI20UBA7-25 FS,SI20UBA7-15 FS,SI20BZP7-50 FS,SI20BZP7-160 FS,SI20BZP7-75 FS,SI20BZP7-171 FS,SI20BZP7-172 FS,SI20BZP7-173 FS,SI20BZK7-180 FS,SI20BZP7-170 FS,SI20BZP7-70 FS,SI20BZP7-181 FS,SI20BZP7-65 FS,SI20BZP7-55 FS,SI20BZP7-182 FS,SI20BZP7-105 FS,SI20BZP7-115 SS,SI20BZP7-174 FS,SI20BZP7-40 FS,SI20BZP7-5 FS,SI20BZP7-35 FS,SI20BZP7-120 FS,SI20BZP7-90 FS,SI20BZP7-125 SS,SI20BZK7-130 SS,SI20BZP7-155 FS,SI20BZP7-145 SS,SI20BZP7-165 FS,SI20BZP7-15 SS,SI20BZP7-135 SS,SI20BZP7-80 SS,SI20BZP7-10 FS,SI20BZP7-95 SS,SI20BZP7-45 FS,SI20BZP7-85 SS,SI20BZP7-50 SS,SI20BZP7-160 SS,SI20BZP7-60 SS,SI20BZP7-171 SS,SI20BZP7-75 SS,SI20BZP7-150 FS,SI20BZP7-20 SS,SI20BZP7-110 SS,SI20BZP7-100 SS,SI20BZP7-140 SS,SI20BZK7-187 FS,SI20BZK7-187 SS,SI20CFE7A25 FS,SI20MAA7A15 FS,SI20MAG7A15 FS,SI20MAJ7A15 FS,SI20MAL7A15 FS,SI20MAN7H15 FS,SI20MAV7H15 FS,SI20MAW7H15 FS,SI20MAX7H15 FS,SI20MB-7H15 FS,SI20MB-7J15 FS,SI20MBQ7H15 FS,SI20LBA7H15 FS,SI20LBA7H16 FS,SI20LBA7J15 FS,SI20LBA7J16 FS,SI20LBB7J15 FS,SI20LBB7J17 FS,SI20LBG7A17 FS,SI20LBG7A15 FS,SI20LAB7H15 FS,SI20LCA7A15 FS,SI20LCL7A15 FS,SI20LCW7H15 FS,SI20LDK7H16 FS,SI20EK-7H15 FS,SI20EK-7I15 FS,SI20PAB7A15 FS,SI20PAH7H15 FS,SI20PAR7A16 FS,SI20PCB7H15 FS,SI20PGB7H15 FS,SI20GHC7H15 FS,SI20GHC7H17 FS,SI20GHD7H15 FS,SI20QFB7H15 FS,SI20QU-7H15 FS,SI20BZK7E26 FS","SI20BZP7-125,SI20BZK7-130,SI20BZP7-95,SI20BZP7-135,SI20BZP7-140,SI20BZP7-60,SI20BZP7-100,SI20BZP7-110,SI20BZP7-145,SI20BZP7-80,SI20BZP7-15,SI20BZP7-20,SI20BZP7-85,SI20BZP7-115,SI20UBA7-25,SI20UBA7-15,SI20BZP7-50,SI20BZP7-160,SI20BZP7-75,SI20BZP7-171,SI20BZP7-172,SI20BZP7-173,SI20BZK7-180,SI20BZP7-170,SI20BZP7-70,SI20BZP7-181,SI20BZP7-65,SI20BZP7-55,SI20BZP7-182,SI20BZP7-105,SI20BZP7-115,SI20BZP7-174,SI20BZP7-40,SI20BZP7-5,SI20BZP7-35,SI20BZP7-120,SI20BZP7-90,SI20BZP7-125,SI20BZK7-130,SI20BZP7-155,SI20BZP7-145,SI20BZP7-165,SI20BZP7-15,SI20BZP7-135,SI20BZP7-80,SI20BZP7-10,SI20BZP7-95,SI20BZP7-45,SI20BZP7-85,SI20BZP7-50,SI20BZP7-160,SI20BZP7-60,SI20BZP7-171,SI20BZP7-75,SI20BZP7-150,SI20BZP7-20,SI20BZP7-110,SI20BZP7-100,SI20BZP7-140,SI20BZK7-187,SI20BZK7-187,SI20CFE7A25,SI20MAA7A15,SI20MAG7A15,SI20MAJ7A15,SI20MAL7A15,SI20MAN7H15,SI20MAV7H15,SI20MAW7H15,SI20MAX7H15,SI20MB-7H15,SI20MB-7J15,SI20MBQ7H15,SI20LBA7H15,SI20LBA7H16,SI20LBA7J15,SI20LBA7J16,SI20LBB7J15,SI20LBB7J17,SI20LBG7A17,SI20LBG7A15,SI20LAB7H15,SI20LCA7A15,SI20LCL7A15,SI20LCW7H15,SI20LDK7H16,SI20EK-7H15,SI20EK-7I15,SI20PAB7A15,SI20PAH7H15,SI20PAR7A16,SI20PCB7H15,SI20PGB7H15,SI20GHC7H15,SI20GHC7H17,SI20GHD7H15,SI20QFB7H15,SI20QU-7H15,SI20BZK7E26",86,,86,,20,,20,,54,328,"HK1003 -Blackpoint D2 - Rev.0E DD30092021"
1-60,SI--PEM6-20&,"START MECHANICAL ERECTION WORKS ON SITE",5121,"HK1003-Rev.0E-3",TT_Mile,"55902",-,-,-,0,TK_NotStart,16/01/2022,,16/01/2022,,"SI--2222-32 SS,SI--2226-66 SS,SI--UB-2-35 FS,SI--UR-2-35 FS,SI--UM-2-35 FS,SI--UE-2E36 FS,SI20UZx5-49 FS,SI--3335-71 FS,SI--3335-70 FS,SI--3335-69 FS,SI--3335-68 FS,SI--3335-67 FS,SI--3335-66 FS,SI--2226-66 FS,SI--3335-73 FS,SI--3335-72 FS,SI--3335-75 FS,SI--3335-74 FS,SI--3335-76 FS,SI--3335-77 FS,SI--3335-78 FS,SI--3335-79 FS,SI--3335-80 FS","SI--2222-32,SI--2226-66,SI--UB-2-35,SI--UR-2-35,SI--UM-2-35,SI--UE-2E36,SI20UZx5-49,SI--3335-71,SI--3335-70,SI--3335-69,SI--3335-68,SI--3335-67,SI--3335-66,SI--2226-66,SI--3335-73,SI--3335-72,SI--3335-75,SI--3335-74,SI--3335-76,SI--3335-77,SI--3335-78,SI--3335-79,SI--3335-80","SI20MB-6-00 FS,SI20MA-6B00 FS,SI20MBR6-15 FS,SI20MA-6-03 FS,SI20MAW6-16 FS,SI20MAV6-15 FS","SI20MB-6-00,SI20MA-6B00,SI20MBR6-15,SI20MA-6-03,SI20MAW6-16,SI20MAV6-15",76,,76,,17,,17,,45,1240,"HK1003 -Blackpoint D2 - Rev.0E DD30092021"
1-61,SP20MPB2A94,"CONTRACT INTO FORCE ENCLOSURE 20MPB",5121,"HK1003-Rev.0E-3",TT_Mile,"55902",-,-,-,100,TK_Complete,25/06/2021,25/06/2021,25/06/2021,25/06/2021,"SP20MPB2A93 FS","SP20MPB2A93","SP20MPB2A98 FS,SP20MPB3A92 FS","SP20MPB2A98,SP20MPB3A92",46,46,46,46,10,10,10,10,19,,"HK1003 -Blackpoint D2 - Rev.0E DD30092021"
1-62,SP20MPB2A93,"QUOTATION STAGE ENCLOSURE 20MPB",5121,"HK1003-Rev.0E-3",TT_Task,"55902",-,-,-,100,TK_Complete,07/05/2021,07/05/2021,24/06/2021,24/06/2021,"SP20MPB2A92 FS","SP20MPB2A92","SP20MPB2A94 FS","SP20MPB2A94",39,39,46,46,9,9,10,10,11,,"HK1003 -Blackpoint D2 - Rev.0E DD30092021"
1-63,SP20MPB2A92,"PREPARE TEC RFQ  ENCLOSURE 20MPB",5121,"HK1003-Rev.0E-3",TT_Task,"55902",-,-,-,100,TK_Complete,29/03/2021,29/03/2021,06/05/2021,06/05/2021,"SI-----1-04 FS","SI-----1-04","SP20MPB2A93 FS,SP--MPB2E70 FS","SP20MPB2A93,SP--MPB2E70",34,34,39,39,8,8,9,9,7,,"HK1003 -Blackpoint D2 - Rev.0E DD30092021"
1-64,SP20MPB3A93,"(RFS) READY FOR SHIPMENT ENCLOSURE 20MPB",5121,"HK1003-Rev.0E-3",TT_FinMile,"55902",-,-,-,0,TK_NotStart,29/04/2022,,29/04/2022,,"SP20MPB4-43 FS","SP20MPB4-43","SI20MPB4-26 FS","SI20MPB4-26",90,,90,,21,,21,,60,504,"HK1003 -Blackpoint D2 - Rev.0E DD30092021"
1-65,SP20MPB3A92,"DETAIL DESIGN / FABRICATION DESIGN ENCLOSURE 20MPB",5121,"HK1003-Rev.0E-3",TT_Task,"55902",-,-,-,25,TK_Active,09/09/2021,09/09/2021,01/12/2021,,"SP20MPB2A94 FS","SP20MPB2A94","SP20MPB3-83 FS,SP20MPB3A94 FS","SP20MPB3-83,SP20MPB3A94",57,57,69,,13,13,16,,29,504,"HK1003 -Blackpoint D2 - Rev.0E DD30092021"
1-66,SP20MPB4-43,"LOGISTICS AND CUSTOMS PREPARATION ENCLOSURE 20MPB",5121,"HK1003-Rev.0E-3",TT_Task,"55902",-,-,-,0,TK_NotStart,02/04/2022,,29/04/2022,,"SP20MPB3-83 FS","SP20MPB3-83","SP20MPB3A93 FS","SP20MPB3A93",87,,90,,20,,21,,55,504,"HK1003 -Blackpoint D2 - Rev.0E DD30092021"
1-67,SP20MPB3-83,"TIMES OF COMPLETION (FINAL DATA IN KANLOG) ENCLOSURE 20MPB",5121,"HK1003-Rev.0E-3",TT_FinMile,"55902",-,-,-,0,TK_NotStart,01/04/2022,,01/04/2022,,"SP20MPB3A92 FS,SP20MPB3A94 FS","SP20MPB3A92,SP20MPB3A94","SP20MPB4-43 FS","SP20MPB4-43",86,,86,,20,,20,,54,504,"HK1003 -Blackpoint D2 - Rev.0E DD30092021"
1-68,SP20MPB4A43,"(OTD-OS) ON SITE ENCLOSURE 20MPB",5121,"HK1003-Rev.0E-3",TT_FinMile,"55902",-,-,-,0,TK_NotStart,23/07/2022,,23/07/2022,,"SI20MPB4-26 FS","SI20MPB4-26","SI20MBA8-10 SS,SI20MPB7E81 SS,SI20MPB7E81 FS,SI20SAM8-10 SS,SI20MPB6E82 FS,SI20MB-4-40 FS","SI20MBA8-10,SI20MPB7E81,SI20MPB7E81,SI20SAM8-10,SI20MPB6E82,SI20MB-4-40",103,,103,,24,,24,,74,272,"HK1003 -Blackpoint D2 - Rev.0E DD30092021"
1-69,SI--PM-2-90,"(DF) 90% DESIGN REVIEW",5121,"HK1003-Rev.0E-3",TT_FinMile,"55902",-,-,-,0,TK_NotStart,12/01/2022,,12/01/2022,,"SI-----1-05 FS,SI--ZTA2A75 FS,SI--PM-2-60 FS,SI20---2M10 FS,SI--5552-86 FS","SI-----1-05,SI--ZTA2A75,SI--PM-2-60,SI20---2M10,SI--5552-86","SI20MB-6-00 FS,SI20MA-6B00 FS,SI20MBR6-15 FS,SI20MA-6-03 FS,SI20MAW6-16 FS,SI20MAV6-15 FS","SI20MB-6-00,SI20MA-6B00,SI20MBR6-15,SI20MA-6-03,SI20MAW6-16,SI20MAV6-15",75,,75,,17,,17,,45,1264,"HK1003 -Blackpoint D2 - Rev.0E DD30092021"
1-70,SI--PM-2-60,"(DF) 60% DESIGN REVIEW",5121,"HK1003-Rev.0E-3",TT_FinMile,"55902",-,-,-,0,TK_NotStart,14/10/2021,,14/10/2021,,"SI-----1-05 FS,SI--B--2-55 FS,SI--B--2A55 FS,SI--L--2-35 FS,SI--G--2I35 FS,SI--L--2I46 FS,SI--L--2I45 FS,SI--P--2I45 FS,SI--BAW2-13 FS,SP--MB-2A55 FS,SP--B--2-52 FS,SI--PM-2-30 FS,SI20---2M10 FS,SI--PAB2-24 FS,SI--5552-86 FS,SI--UB-2-36 FS,SI--UR-2-45 FS,SI--UE-2E37 FS,SI--UE2-E38 FS,SI--SG-2-46 FS,SI--SGA2-31 FS","SI-----1-05,SI--B--2-55,SI--B--2A55,SI--L--2-35,SI--G--2I35,SI--L--2I46,SI--L--2I45,SI--P--2I45,SI--BAW2-13,SP--MB-2A55,SP--B--2-52,SI--PM-2-30,SI20---2M10,SI--PAB2-24,SI--5552-86,SI--UB-2-36,SI--UR-2-45,SI--UE-2E37,SI--UE2-E38,SI--SG-2-46,SI--SGA2-31","SI--PM-2-90 FS","SI--PM-2-90",62,,62,,14,,14,,34,1264,"HK1003 -Blackpoint D2 - Rev.0E DD30092021"
1-71,SI--PM-2-30,"(DF) 30% DESIGN REVIEW",5121,"HK1003-Rev.0E-3",TT_FinMile,"55902",-,-,-,100,TK_Complete,30/04/2021,30/04/2021,30/04/2021,30/04/2021,"SI-----1-05 FS,SI--B--2A50 FS,SI--B--2-50 FS,SI--SG-2-20 FS,SI--SA-2-05 FS,SI--G--2A05 FS,SI--L--2-05 FS,SI--P--2-05 FS,SI--L--2-35 FS,SI--P--2-35 FS,SI--G--2-35 FS,SP--MB-2-50 FS,SI--SG-2-21 FS,SI--2222-71 FS,SI--2222-70 FS,SI--UB-2-35 FS,SI--UR-2-35 FS,SI--UM-2-35 FS,SI--3332-27 FS,SI20---2M10 FS,SI--2222-134 FS,SI--UE-2E36 FS","SI-----1-05,SI--B--2A50,SI--B--2-50,SI--SG-2-20,SI--SA-2-05,SI--G--2A05,SI--L--2-05,SI--P--2-05,SI--L--2-35,SI--P--2-35,SI--G--2-35,SP--MB-2-50,SI--SG-2-21,SI--2222-71,SI--2222-70,SI--UB-2-35,SI--UR-2-35,SI--UM-2-35,SI--3332-27,SI20---2M10,SI--2222-134,SI--UE-2E36","SI--BZP2-15 FS,SI--PM-2-60 FS,SI--5552-86 FS,SI20UZJ2-81 FS,SI20UTG2-5 FS,SI20UTG2-49 FS,SI20UTG2-65 FS,SI20UTG2-73 FS,SI20UTG2-81 FS,SI20UTG2-57 FS,SI20UTG2-41 FS","SI--BZP2-15,SI--PM-2-60,SI--5552-86,SI20UZJ2-81,SI20UTG2-5,SI20UTG2-49,SI20UTG2-65,SI20UTG2-73,SI20UTG2-81,SI20UTG2-57,SI20UTG2-41",38,38,38,38,9,9,9,9,10,,"HK1003 -Blackpoint D2 - Rev.0E DD30092021"
1-72,SI20---3G80&,"START OF STEELWORK OF ASSEMBLY LOT 3",5121,"HK1003-Rev.0E-3",TT_FinMile,"55902",-,-,-,0,TK_NotStart,02/03/2022,,02/03/2022,,"SI20---3G79& FS","SI20---3G79&","SI20---3M72 FS,SI20---3B52 FS","SI20---3M72,SI20---3B52",82,,82,,19,,19,,51,952,"HK1003 -Blackpoint D2 - Rev.0E DD30092021"
1-73,SI20---3G79&,"START OF STEELWORK OF ASSEMBLY LOT 2",5121,"HK1003-Rev.0E-3",TT_FinMile,"55902",-,-,-,0,TK_NotStart,03/02/2022,,03/02/2022,,"SI20---3G77& FS","SI20---3G77&","SI20---3G80& FS,SI20---3B45 FS","SI20---3G80&,SI20---3B45",78,,78,,18,,18,,47,208,"HK1003 -Blackpoint D2 - Rev.0E DD30092021"
1-74,SI20---3G77&,"START OF STEELWORK OF ASSEMBLY LOT 1",5121,"HK1003-Rev.0E-3",TT_FinMile,"55902",-,-,-,0,TK_NotStart,05/01/2022,,05/01/2022,,"SI20---3G75& FS","SI20---3G75&","SI20---3G79& FS,SI20---3B37 FS","SI20---3G79&,SI20---3B37",74,,74,,17,,17,,44,240,"HK1003 -Blackpoint D2 - Rev.0E DD30092021"
1-75,SI20---3G75&,"START OF STEELWORK PREFABRICATION SHIPMENT LOT 3",5121,"HK1003-Rev.0E-3",TT_FinMile,"55902",-,-,-,0,TK_NotStart,09/11/2021,,09/11/2021,,"SI20---3G78 FS,SI20---3G76 FS","SI20---3G78,SI20---3G76","SI20---3B51 FS,SI20---3G77& FS","SI20---3B51,SI20---3G77&",66,,66,,15,,15,,37,696,"HK1003 -Blackpoint D2 - Rev.0E DD30092021"
1-76,SI20---3G73&,"START OF STEELWORK PREFABRICATION SHIPMENT LOT 2",5121,"HK1003-Rev.0E-3",TT_FinMile,"55902",-,-,-,0,TK_NotStart,07/10/2021,,07/10/2021,,"SI20---3G74 FS,SI20---3G72 FS","SI20---3G74,SI20---3G72","SI20---3B44 FS","SI20---3B44",61,,61,,14,,14,,32,208,"HK1003 -Blackpoint D2 - Rev.0E DD30092021"
1-77,SI----P3I32,"FINAL CONTROL VALVE DRAWINGS AVAILABLE",5121,"HK1003-Rev.0E-3",TT_Mile,"55902",-,-,-,100,TK_Complete,27/05/2021,27/05/2021,27/05/2021,27/05/2021,"SI----P3I33 SS","SI----P3I33","SI20---3M25 FS","SI20---3M25",42,42,42,42,9,9,9,9,14,,"HK1003 -Blackpoint D2 - Rev.0E DD30092021"
1-78,SI----P3I31,"PRELIMINARY CONTROL VALVE DRAWINGS AVAILABLE",5121,"HK1003-Rev.0E-3",TT_Mile,"55902",-,-,-,100,TK_Complete,29/04/2021,29/04/2021,29/04/2021,29/04/2021,"SI----P3I33 SS","SI----P3I33","SI---1P2A10 FS","SI---1P2A10",38,38,38,38,9,9,9,9,10,,"HK1003 -Blackpoint D2 - Rev.0E DD30092021"
1-79,SI----P3I30,"FINAL VALVE DRAWINGS AVAILABLE",5121,"HK1003-Rev.0E-3",TT_Mile,"55902",-,-,-,100,TK_Complete,19/06/2021,19/06/2021,19/06/2021,19/06/2021,"SI----P3I21 SS","SI----P3I21","SI20-1P340 FS,SI20---3B44 FS,SI20---3B51 FS","SI20-1P340,SI20---3B44,SI20---3B51",46,46,46,46,10,10,10,10,18,,"HK1003 -Blackpoint D2 - Rev.0E DD30092021"
1-80,SI----P3I29,"PRELIMINARY VALVE DRAWINGS AVAILABLE",5121,"HK1003-Rev.0E-3",TT_Mile,"55902",-,-,-,100,TK_Complete,22/05/2021,22/05/2021,22/05/2021,22/05/2021,"SI----P3I21 SS","SI----P3I21","SI---1P2A10 FS","SI---1P2A10",42,42,42,42,9,9,9,9,13,,"HK1003 -Blackpoint D2 - Rev.0E DD30092021"
1-81,SI20PCB6M16,"ERECTION MODULE 20PCB10Y",5121,"HK1003-Rev.0E-3",TT_Task,"55902",-,-,-,0,TK_NotStart,04/06/2022,,10/06/2022,,"SI20PCB4-40 FS,SI20PGB6M15 SS,SI20UMC5E48 FS","SI20PCB4-40,SI20PGB6M15,SI20UMC5E48","SI20PCB6M40 FF,SI20PGB6M16 SS,SI20UMC6B-35 FS","SI20PCB6M40,SI20PGB6M16,SI20UMC6B-35",96,,96,,22,,22,,68,1104,"HK1003 -Blackpoint D2 - Rev.0E DD30092021"
1-82,SI--CP-4-28,"TRANSPORT CCR FURNITURE AND HMI EQUIPMENT",5121,"HK1003-Rev.0E-3",TT_Task,"55902",-,-,-,0,TK_NotStart,03/05/2022,,27/06/2022,,"SI--C--3E82 FS","SI--C--3E82","SI20UCA7-15 FS,SI20UCA7-08 FS","SI20UCA7-15,SI20UCA7-08",91,,99,,21,,23,,61,1120,"HK1003 -Blackpoint D2 - Rev.0E DD30092021"
1-83,SI--C--4-12,"LOGISTICS AND CUSTOMS PREPARATION CCR FURNITURE AND HMI EQUIPMENT",5121,"HK1003-Rev.0E-3",TT_Task,"55902",-,-,-,0,TK_NotStart,05/04/2022,,02/05/2022,,"SI--C--3-72 FS","SI--C--3-72","SI--C--3E82 FS","SI--C--3E82",87,,91,,20,,21,,56,1120,"HK1003 -Blackpoint D2 - Rev.0E DD30092021"
1-84,SI--C--3-72,"TIMES OF COMPLETION (FINAL DATA IN KANLOG) CCR FURNITURE AND HMI EQUIPMENT",5121,"HK1003-Rev.0E-3",TT_FinMile,"55902",-,-,-,0,TK_NotStart,04/04/2022,,04/04/2022,,"SI--C--3E26 FS","SI--C--3E26","SI--C--4-12 FS","SI--C--4-12",87,,87,,20,,20,,55,1120,"HK1003 -Blackpoint D2 - Rev.0E DD30092021"
1-85,SI--C--3E26,"DETAIL DESIGN / MANUFACTURING/ SHOP TEST CCR FURNITURE AND HMI EQUIPMENT",5121,"HK1003-Rev.0E-3",TT_Task,"55902",-,-,-,39,TK_Active,04/06/2021,04/06/2021,04/04/2022,,"SI--C--2C50 SS,SI--C--2-85 SS,SI--C--3E86 FS,SI--C--3E87 FF","SI--C--2C50,SI--C--2-85,SI--C--3E86,SI--C--3E87","SI--C--3-72 FS","SI--C--3-72",43,43,87,,10,10,20,,16,1120,"HK1003 -Blackpoint D2 - Rev.0E DD30092021"
1-86,SI--C--3E82,"(RFS) READY FOR SHIPMENT CCR FURNITURE AND HMI EQUIPMENT",5121,"HK1003-Rev.0E-3",TT_FinMile,"55902",-,-,-,0,TK_NotStart,02/05/2022,,02/05/2022,,"SI--C--4-12 FS","SI--C--4-12","SI--CP-4-28 FS","SI--CP-4-28",91,,91,,21,,21,,61,1120,"HK1003 -Blackpoint D2 - Rev.0E DD30092021"
1-87,SI20CFE4-25,"TRANSPORT TO SITE EMISSION MONITORING SYSTEM 20CFE",5121,"HK1003-Rev.0E-3",TT_Task,"55902",-,-,-,0,TK_NotStart,05/05/2022,,29/06/2022,,"SI20CFE3-80 FS","SI20CFE3-80","SI20CFE4-40 FF","SI20CFE4-40",91,,99,,21,,23,,62,1424,"HK1003 -Blackpoint D2 - Rev.0E DD30092021"
1-88,SI20CFE4-10,"LOGISTICS AND CUSTOMS PREPARATION - EMISSION MONITORING SYSTEM 20CFE",5121,"HK1003-Rev.0E-3",TT_Task,"55902",-,-,-,0,TK_NotStart,07/04/2022,,04/05/2022,,"SI20CFE3-70 FS","SI20CFE3-70","SI20CFE3-80 FS","SI20CFE3-80",87,,91,,20,,21,,56,1424,"HK1003 -Blackpoint D2 - Rev.0E DD30092021"
1-89,SI20CFE3-70,"TIMES OF COMPLETION (FINAL DATA IN KANLOG) EMISSION MONITORING SYSTEM 20CFE",5121,"HK1003-Rev.0E-3",TT_FinMile,"55902",-,-,-,0,TK_NotStart,06/04/2022,,06/04/2022,,"SI20CFE3-25 FS","SI20CFE3-25","SI20CFE4-10 FS","SI20CFE4-10",87,,87,,20,,20,,56,1424,"HK1003 -Blackpoint D2 - Rev.0E DD30092021"
1-90,SI20CFE3-25,"DETAIL DESIGN, MANUFACTURING, SHOP TEST FOR EMISSION MONITORING SYSTEM 20CFE",5121,"HK1003-Rev.0E-3",TT_Task,"55902",-,-,-,37,TK_Active,10/06/2021,10/06/2021,06/04/2022,,"SI--C--2-80 FS,SI--C--2-85 SS","SI--C--2-80,SI--C--2-85","SI20CFE3-70 FS,SI20CFE2-90 FS","SI20CFE3-70,SI20CFE2-90",44,44,87,,10,10,20,,16,1424,"HK1003 -Blackpoint D2 - Rev.0E DD30092021"
1-91,SI20CFE3-80,"(RFS) READY FOR SHIPMENT EMISSION MONITORING SYSTEM 20CFE",5121,"HK1003-Rev.0E-3",TT_FinMile,"55902",-,-,-,0,TK_NotStart,04/05/2022,,04/05/2022,,"SI20CFE4-10 FS","SI20CFE4-10","SI20CFE4-25 FS","SI20CFE4-25",91,,91,,21,,21,,61,1424,"HK1003 -Blackpoint D2 - Rev.0E DD30092021"
1-92,SI--CP-4-29,"TRANSPORT BOP I&C CABLES (LOT1)",5121,"HK1003-Rev.0E-3",TT_Task,"55902",-,-,-,0,TK_NotStart,17/06/2022,,11/08/2022,,"SI--C--3E83 FS","SI--C--3E83","SI20BZK4-41 FS","SI20BZK4-41",97,,105,,22,,24,,70,464,"HK1003 -Blackpoint D2 - Rev.0E DD30092021"
1-93,SI--C--4-13,"LOGISTICS AND CUSTOMS PREPARATION BOP I&C CABLES (LOT1)",5121,"HK1003-Rev.0E-3",TT_Task,"55902",-,-,-,0,TK_NotStart,29/01/2022,,25/02/2022,,"SI--C--3-73 FS","SI--C--3-73","SI--C--3E83 FS","SI--C--3E83",78,,81,,18,,19,,47,1352,"HK1003 -Blackpoint D2 - Rev.0E DD30092021"
1-94,SI--C--3-73,"TIMES OF COMPLETION (FINAL DATA IN KANLOG) BOP I&C CABLES (LOT1)",5121,"HK1003-Rev.0E-3",TT_FinMile,"55902",-,-,-,0,TK_NotStart,28/01/2022,,28/01/2022,,"SI--C--3E28 FS","SI--C--3E28","SI--C--4-13 FS","SI--C--4-13",77,,77,,18,,18,,47,1352,"HK1003 -Blackpoint D2 - Rev.0E DD30092021"
1-95,SI--C--3E28,"DETAIL DESIGN / MANUFACTURING/ SHOP TEST FOR BOP I&C CABLES (LOT1)",5121,"HK1003-Rev.0E-3",TT_Task,"55902",-,-,-,0,TK_NotStart,16/10/2021,,28/01/2022,,"SI--C--2E85 SS","SI--C--2E85","SI--C--3-73 FS","SI--C--3-73",63,,77,,14,,18,,34,1352,"HK1003 -Blackpoint D2 - Rev.0E DD30092021"
1-96,SI--C--3E83,"(RFS) READY FOR SHIPMENT BOP I&C CABLES (LOT1)",5121,"HK1003-Rev.0E-3",TT_FinMile,"55902",-,-,-,0,TK_NotStart,25/02/2022,,25/02/2022,,"SI--C--4-13 FS","SI--C--4-13","SI--CP-4-29 FS","SI--CP-4-29",81,,81,,19,,19,,51,1352,"HK1003 -Blackpoint D2 - Rev.0E DD30092021"
1-97,SI--CP-4-26,"TRANSPORT BOP I&C FIELD DEVICES",5121,"HK1003-Rev.0E-3",TT_Task,"55902",-,-,-,0,TK_NotStart,17/08/2022,,11/10/2022,,"SI--C--3E80 FS","SI--C--3E80","SI20C--7B17 FS,SI20C--7B15 FS","SI20C--7B17,SI20C--7B15",106,,114,,24,,26,,78,304,"HK1003 -Blackpoint D2 - Rev.0E DD30092021"
1-98,SP--CJP2-41,"SIGNAL EXCHANGE WITH LOAD DISPATCHER",5121,"HK1003-Rev.0E-3",TT_FinMile,"55902",-,-,-,0,TK_NotStart,26/11/2021,,26/11/2021,,"SI--C--2C55 FS,SI--C--2-40 FF","SI--C--2C55,SI--C--2-40","SI--C--2-42 FS","SI--C--2-42",68,,68,,16,,16,,39,1376,"HK1003 -Blackpoint D2 - Rev.0E DD30092021"
1-99,SP--CJP2-40,"(DF) GT FINAL INPUT FOR I&C UNIT COORDINATION",5121,"HK1003-Rev.0E-3",TT_FinMile,"55902",-,-,-,0,TK_NotStart,25/11/2021,,25/11/2021,,"SI--C--2C55 FS","SI--C--2C55","SI--C--2-40 FF","SI--C--2-40",68,,68,,16,,16,,39,1208,"HK1003 -Blackpoint D2 - Rev.0E DD30092021"
1-100,SP--CJJ2-39,"(DF) ST FINAL INPUT FOR I&C UNIT COORDINATION",5121,"HK1003-Rev.0E-3",TT_FinMile,"55902",-,-,-,0,TK_NotStart,25/11/2021,,25/11/2021,,"SI--C--2C55 FS","SI--C--2C55","SI--C--2-40 FF","SI--C--2-40",68,,68,,16,,16,,39,1208,"HK1003 -Blackpoint D2 - Rev.0E DD30092021"
1-101,SP--CJP2-39,"PREL. XML - DATA FOR SIMULATOR",5121,"HK1003-Rev.0E-3",TT_Mile,"55902",-,-,-,0,TK_NotStart,07/01/2022,,07/01/2022,,"SI--C--2-43 SS","SI--C--2-43","SI--C--2B70 FS,SI--C--2B83 FS","SI--C--2B70,SI--C--2B83",74,,74,,17,,17,,44,1208,"HK1003 -Blackpoint D2 - Rev.0E DD30092021"
1-102,SI--C--2-43,"IMPLEMENTATION HARDWARE PROXIES FUPs & OM COMBINED CYCLE",5121,"HK1003-Rev.0E-3",TT_Task,"55902",-,-,-,0,TK_NotStart,31/12/2021,,27/01/2022,,"SI--C--2-44 FF,SI--C--2-42 SS","SI--C--2-44,SI--C--2-42","SP--CJP2-39 SS","SP--CJP2-39",73,,77,,17,,18,,43,1208,"HK1003 -Blackpoint D2 - Rev.0E DD30092021"
1-103,SI--C--2-44,"REVISION I&C DOCUMENTS",5121,"HK1003-Rev.0E-3",TT_Task,"55902",-,-,-,0,TK_NotStart,07/01/2022,,27/01/2022,,"SI--C--2-42 FS","SI--C--2-42","SI--C--2B83 FS,SI--C--2-43 FF","SI--C--2B83,SI--C--2-43",74,,77,,17,,18,,44,1208,"HK1003 -Blackpoint D2 - Rev.0E DD30092021"
1-104,SI--C--2-42,"DESIGN REVIEW I&C AUTOMATION HMI",5121,"HK1003-Rev.0E-3",TT_Task,"55902",-,-,-,0,TK_NotStart,17/12/2021,,06/01/2022,,"SP--CJP2-41 FS,SI--C--2-40 FS","SP--CJP2-41,SI--C--2-40","SI--C--2-43 SS,SI--C--2-44 FS","SI--C--2-43,SI--C--2-44",71,,74,,16,,17,,42,1208,"HK1003 -Blackpoint D2 - Rev.0E DD30092021"
1-105,SI--C--2-40,"ENGINEERING CLOSED LOOP CONTROLS",5121,"HK1003-Rev.0E-3",TT_Task,"55902",-,-,-,26,TK_Active,03/09/2021,03/09/2021,16/12/2021,,"SP--CJP2-40 FF,SP--CJJ2-39 FF,SP--CJJ2-38 FF,SI--C--2B35 FF,SI--C--2C50 FS,SP--CJP2-38 FF,SI--C--2C55 FF,SI-----1-05 FS","SP--CJP2-40,SP--CJJ2-39,SP--CJJ2-38,SI--C--2B35,SI--C--2C50,SP--CJP2-38,SI--C--2C55,SI-----1-05","SI--C--2C71 FS,SI--C--2-42 FS,SP--CJP2-41 FF,SI--C--2-41 FS","SI--C--2C71,SI--C--2-42,SP--CJP2-41,SI--C--2-41",56,56,71,,13,13,16,,28,1208,"HK1003 -Blackpoint D2 - Rev.0E DD30092021"
1-106,SI--CKA2-19,"SERVER CHECK WITHIN PRECOMMISSIONING (PLANT SHOP TEST)",5121,"HK1003-Rev.0E-3",TT_Task,"55902",-,-,-,0,TK_NotStart,18/02/2022,,24/02/2022,,"SI--CKA2-18 FS,SI20UBA3-91 SS","SI--CKA2-18,SI20UBA3-91","SI--CKA2-04 FS","SI--CKA2-04",80,,81,,18,,19,,50,584,"HK1003 -Blackpoint D2 - Rev.0E DD30092021"
1-107,SI--CKA2-18,"PRELIMINARY PRODUCT MANUAL THERMODYN. DIAGN.",5121,"HK1003-Rev.0E-3",TT_Task,"55902",-,-,-,0,TK_NotStart,21/10/2021,,10/11/2021,,"SI--CKA2-17 FF","SI--CKA2-17","SI--CKA2-19 FS,SI--CKA2-04 FS","SI--CKA2-19,SI--CKA2-04",63,,66,,14,,15,,35,1152,"HK1003 -Blackpoint D2 - Rev.0E DD30092021"
1-108,SI--CKA2-17,"SYSTEM SETUP THERMODYN. DIAGN. AT PLANT SHOP TEST FIELD",5121,"HK1003-Rev.0E-3",TT_Task,"55902",-,-,-,0,TK_NotStart,14/10/2021,,10/11/2021,,"SI--CKA2-16 FS","SI--CKA2-16","SI--CKA2-18 FF","SI--CKA2-18",62,,66,,14,,15,,34,1152,"HK1003 -Blackpoint D2 - Rev.0E DD30092021"
1-109,SI--CKA2-16,"DETAILED PLANNING THERMODYN. DIAGN.",5121,"HK1003-Rev.0E-3",TT_Task,"55902",-,-,-,83,TK_Active,22/07/2021,22/07/2021,13/10/2021,,"SI--CKA2-00 FS","SI--CKA2-00","SI--CKA2-17 FS,SI--CKA7-15 FS","SI--CKA2-17,SI--CKA7-15",50,50,62,,11,11,14,,22,1152,"HK1003 -Blackpoint D2 - Rev.0E DD30092021"
1-110,SI--G--2-88,"(DF) SW ENGINEERING / HANDOVER T3000",5121,"HK1003-Rev.0E-3",TT_FinMile,"55902",-,-,-,0,TK_NotStart,17/10/2021,,17/10/2021,,"SI--G--2-80 FS","SI--G--2-80","SI--C--2B83 FS,SI--C--2B70 FS","SI--C--2B83,SI--C--2B70",63,,63,,14,,14,,34,1856,"HK1003 -Blackpoint D2 - Rev.0E DD30092021"
1-111,SI--G--2-87,"I&C SW ENGINEERING FUPS & HMI'S G-SYSTEM",5121,"HK1003-Rev.0E-3",TT_Task,"55902",-,-,-,0,TK_NotStart,02/10/2021,,14/01/2022,,"SI--G--2I35 FS","SI--G--2I35","SI--HA-2-00 SS,SI--L--2-29 SS,SI--P--2-29 SS,SI--C--2B70 FS","SI--HA-2-00,SI--L--2-29,SI--P--2-29,SI--C--2B70",61,,75,,14,,17,,31,1144,"HK1003 -Blackpoint D2 - Rev.0E DD30092021"
1-112,SI--G--2-86,"FINAL MSR FOR I&C",5121,"HK1003-Rev.0E-3",TT_FinMile,"55902",-,-,-,100,TK_Complete,04/09/2021,04/09/2021,04/09/2021,04/09/2021,"SI--G--2-85 FS","SI--G--2-85","SI--C--2-50 FS","SI--C--2-50",57,57,57,57,13,13,13,13,28,,"HK1003 -Blackpoint D2 - Rev.0E DD30092021"
1-113,SI--G--2-85,"DATA MANAGEMENT G-SYSTEMS",5121,"HK1003-Rev.0E-3",TT_Task,"55902",-,-,-,100,TK_Complete,04/07/2021,04/07/2021,04/09/2021,04/09/2021,"SI--G--2-65 FS","SI--G--2-65","SI--G--2-80 FS,SI--G--2-86 FS","SI--G--2-80,SI--G--2-86",48,48,57,57,11,11,13,13,20,,"HK1003 -Blackpoint D2 - Rev.0E DD30092021"
1-114,SI--G--2-84,"HARA / SIL-STUDY ASSESSMENT OF NONSTANDARD SYSTEMS",5121,"HK1003-Rev.0E-3",TT_Task,"55902",-,-,-,100,TK_Complete,04/07/2021,04/07/2021,10/07/2021,10/07/2021,"SI--G--2-65 FS,SI--G--2-83 FS","SI--G--2-65,SI--G--2-83","SI--G--2-30 FS","SI--G--2-30",48,48,49,49,11,11,11,11,20,,"HK1003 -Blackpoint D2 - Rev.0E DD30092021"
1-115,SI--G--2-83,"HARA / SIL-STUDY ASSESSMENT OF NONSTANDARD SYSTEMS",5121,"HK1003-Rev.0E-3",TT_Task,"55902",-,-,-,100,TK_Complete,28/02/2021,28/02/2021,03/07/2021,03/07/2021,"SI--G--2-20 FS,SI--G--2-75 FF,SI--G--2-89 FS","SI--G--2-20,SI--G--2-75,SI--G--2-89","SI--G--2-84 FS,SI--G--2-65 FS","SI--G--2-84,SI--G--2-65",30,30,48,48,7,7,11,11,5,,"HK1003 -Blackpoint D2 - Rev.0E DD30092021"
1-116,SI--P--2-80,"(DF) SW ENGINEERING / HANDOVER T3000",5121,"HK1003-Rev.0E-3",TT_Mile,"55902",-,-,-,100,TK_Complete,18/08/2021,18/08/2021,18/08/2021,18/08/2021,"SI--P--2-29 SS","SI--P--2-29","SI--C--2B83 FS,SI--C--2B70 FS","SI--C--2B83,SI--C--2B70",54,54,54,54,12,12,12,12,26,,"HK1003 -Blackpoint D2 - Rev.0E DD30092021"
1-117,SI--P--2-29,"I&C SW ENGINEERING FUPS & HMI'S P-SYSTEM",5121,"HK1003-Rev.0E-3",TT_Task,"55902",-,-,-,0,TK_NotStart,02/10/2021,,14/01/2022,,"SI--P--2-65 FS,SI--C--2B35 SS,SI--G--2-87 SS","SI--P--2-65,SI--C--2B35,SI--G--2-87","SI--P--2-80 SS,SI--C--2B70 FS","SI--P--2-80,SI--C--2B70",61,,75,,14,,17,,31,1144,"HK1003 -Blackpoint D2 - Rev.0E DD30092021"
1-118,SI--P--2-79,"HARA / SIL-STUDY ASSESSMENT OF STANDARD SYSTEMS",5121,"HK1003-Rev.0E-3",TT_Task,"55902",-,-,-,100,TK_Complete,05/05/2021,05/05/2021,11/05/2021,11/05/2021,"SI--P--2-75 FS,SI--P--2-77 FS","SI--P--2-75,SI--P--2-77","SI--P--2-70 FF","SI--P--2-70",39,39,40,40,9,9,9,9,11,,"HK1003 -Blackpoint D2 - Rev.0E DD30092021"
1-119,SI--P--2-78,"FINAL MSR FOR I&C",5121,"HK1003-Rev.0E-3",TT_FinMile,"55902",-,-,-,100,TK_Complete,06/07/2021,06/07/2021,06/07/2021,06/07/2021,"SI--P--2-28 FS","SI--P--2-28","SI--C--2C55 FS","SI--C--2C55",48,48,48,48,11,11,11,11,20,,"HK1003 -Blackpoint D2 - Rev.0E DD30092021"
1-120,SI--L--2-80,"HARA / SIL-STUDY ASSESSMENT OF STANDARD SYSTEMS",5121,"HK1003-Rev.0E-3",TT_Task,"55902",-,-,-,100,TK_Complete,05/05/2021,05/05/2021,11/05/2021,11/05/2021,"SI--L--2-77 FS","SI--L--2-77","SI--L--2-30 FS","SI--L--2-30",39,39,40,40,9,9,9,9,11,,"HK1003 -Blackpoint D2 - Rev.0E DD30092021"
1-121,SI--P--2-77,"HARA / SIL-STUDY ASSESSMENT OF NONSTANDARD SYSTEMS",5121,"HK1003-Rev.0E-3",TT_Task,"55902",-,-,-,100,TK_Complete,13/01/2021,13/01/2021,04/05/2021,04/05/2021,"SI--3332-02 FS,SI--P--2-05 SS,SI--P--2-75 FF","SI--3332-02,SI--P--2-05,SI--P--2-75","SI--P--2-79 FS","SI--P--2-79",23,23,39,39,5,5,9,9,1,,"HK1003 -Blackpoint D2 - Rev.0E DD30092021"
1-122,SI--L--2-79,"(DF) SW ENGINEERING / HANDOVER T3000",5121,"HK1003-Rev.0E-3",TT_Mile,"55902",-,-,-,100,TK_Complete,21/08/2021,21/08/2021,21/08/2021,21/08/2021,"SI--C--2C55 FS,SI--L--2-29 SS","SI--C--2C55,SI--L--2-29","SI--C--2B83 FS,SI--C--2B70 FS","SI--C--2B83,SI--C--2B70",55,55,55,55,12,12,12,12,26,,"HK1003 -Blackpoint D2 - Rev.0E DD30092021"
1-123,SI--L--2-29,"I&C SW ENGINEERING FUPS & HMI'S L-SYSTEM",5121,"HK1003-Rev.0E-3",TT_Task,"55902",-,-,-,0,TK_NotStart,02/10/2021,,14/01/2022,,"SI--L--2-65 FS,SI--C--2B35 SS,SI--G--2-87 SS","SI--L--2-65,SI--C--2B35,SI--G--2-87","SI--L--2-79 SS,SI--C--2B70 FS","SI--L--2-79,SI--C--2B70",61,,75,,14,,17,,31,1144,"HK1003 -Blackpoint D2 - Rev.0E DD30092021"
1-124,SI--L--2-78,"FINAL MSR FOR I&C",5121,"HK1003-Rev.0E-3",TT_FinMile,"55902",-,-,-,100,TK_Complete,06/07/2021,06/07/2021,06/07/2021,06/07/2021,"SI--L--2-28 FS","SI--L--2-28","SI--C--2C55 FS","SI--C--2C55",48,48,48,48,11,11,11,11,20,,"HK1003 -Blackpoint D2 - Rev.0E DD30092021"
1-125,SI--L--2-77,"HARA / SIL-STUDY ASSESSMENT OF NONSTANDARD SYSTEMS",5121,"HK1003-Rev.0E-3",TT_Task,"55902",-,-,-,100,TK_Complete,11/01/2021,11/01/2021,04/05/2021,04/05/2021,"SI--L--2-05 SS,SI--3332-02 SS,SI--L--2-75 FF","SI--L--2-05,SI--3332-02,SI--L--2-75","SI--L--2-80 FS,SI--L--2-65 FS","SI--L--2-80,SI--L--2-65",23,23,39,39,5,5,9,9,1,,"HK1003 -Blackpoint D2 - Rev.0E DD30092021"
1-126,SI--HA-2-00,"I&C SW ENGINEERING FUPS & HMI'S HRSG-SYSTEM",5121,"HK1003-Rev.0E-3",TT_Task,"55902",-,-,-,0,TK_NotStart,02/10/2021,,14/01/2022,,"SI--HA-2-65 FS,SI--G--2-87 SS","SI--HA-2-65,SI--G--2-87","SI--C--2B83 FS","SI--C--2B83",61,,75,,14,,17,,31,3176,"HK1003 -Blackpoint D2 - Rev.0E DD30092021"
1-127,SI--HA-2A87,"HANDOVER OF P&ID'S TO HRSG ENGINEERING",5121,"HK1003-Rev.0E-3",TT_Mile,"55902",-,-,-,100,TK_Complete,19/03/2021,19/03/2021,19/03/2021,19/03/2021,"SI--HA-2A85 FS,SI20HS-2-89 FS,SI--HA-2-05 FS","SI--HA-2A85,SI20HS-2-89,SI--HA-2-05","SI--HA-2-59 FS","SI--HA-2-59",32,32,32,32,7,7,7,7,6,,"HK1003 -Blackpoint D2 - Rev.0E DD30092021"
1-128,SI--3332-65,"(DF) PROCESS FINAL / INPUT FOR M2 BUILDING BLOCKS (TBD by building blocks)",5121,"HK1003-Rev.0E-3",TT_Mile,"55902",-,-,-,100,TK_Complete,24/10/2020,24/10/2020,24/10/2020,24/10/2020,"SI--3332-62 FS,SI--3332-63 FS,SI--3332-61 FS","SI--3332-62,SI--3332-63,SI--3332-61","SI--PAB2-10 SS,SI--EKG2-10 SS,SI--MA-2E10 SS,SI--MA-2-10 SS,SI--LAB2-10 SS,SI--LB-2-10 SS,SI--P--2-00 SS","SI--PAB2-10,SI--EKG2-10,SI--MA-2E10,SI--MA-2-10,SI--LAB2-10,SI--LB-2-10,SI--P--2-00",12,12,12,12,2,2,2,2,0,,"HK1003 -Blackpoint D2 - Rev.0E DD30092021"
1-129,SI--3332-63,"(DF) CONFIRMATION OF M-COMP. HEAT LOADS F. PGB-SYS.",5121,"HK1003-Rev.0E-3",TT_Mile,"55902",-,-,-,100,TK_Complete,15/08/2020,15/08/2020,15/08/2020,15/08/2020,"SI-----1-03 FS,SI--3332-01 FS","SI-----1-03,SI--3332-01","SI--3332-65 FS","SI--3332-65",2,2,2,2,0,0,0,0,0,,"HK1003 -Blackpoint D2 - Rev.0E DD30092021"
1-130,SI--3332-62,"CONFIRMATION OF COOLING TOWER HYDRAULIC HIGHT",5121,"HK1003-Rev.0E-3",TT_Mile,"55902",-,-,-,100,TK_Complete,15/08/2020,15/08/2020,15/08/2020,15/08/2020,"SI-----1-03 FS,SI--3332-01 FS","SI-----1-03,SI--3332-01","SI--3332-65 FS","SI--3332-65",2,2,2,2,0,0,0,0,0,,"HK1003 -Blackpoint D2 - Rev.0E DD30092021"
1-131,SI--3332-61,"M2 ORDERABILITY PID FOR COMPLETE SYSTEMS (Building Block Scope only)",5121,"HK1003-Rev.0E-3",TT_Task,"55902",-,-,-,100,TK_Complete,01/08/2020,01/08/2020,23/10/2020,23/10/2020,"SI--3332-01 FS","SI--3332-01","SI--3332-65 FS,SI-----2E92 FS","SI--3332-65,SI-----2E92",0,0,11,11,0,0,2,2,0,,"HK1003 -Blackpoint D2 - Rev.0E DD30092021"
1-132,SI---5P6A09,"PREFABRICATION ON SITE ALL SYSTEMS LOT 5",5121,"HK1003-Rev.0E-3",TT_Task,"55902",-,-,-,0,TK_NotStart,27/05/2022,,23/06/2022,,"SI---2S6-05& FS,SI---1P6A7 FS","SI---2S6-05&,SI---1P6A7","SI20GM-6H17 FS,SI20GM-6H18 FS,SI20GM-6H16 FS,SI20QC-6H17 FS,SI20QU-6H15 FS,SI20---6A15# SS,SI20---6A15# FF,SI20MAA6A15 FS,SI20QFB6H15 FS,SI20GHD6H15 FS,SI20GKB6H16 FS,SI20GKB6H15 FS,SI20SCB6A15 FS,SI20QJA6A15 FS,SI20QJA6A46 FS,SI20MKQ6A15 FS,SI20PCB6H15 FS,SI20MBA6A15 FS,SI20---6A15# FS,SI20MKW6H15 FS,SI20MBA6F15 FS,SI20PAR6A15 FS,SI20PAH6H15 FS,SI20PGB6H15 FS,SI20PGB6H17 FS,SI20MKG6A16 FS,SI20PSB6A15 FS,SI20MKA6A15 FS,SI20PUS6A15 FS,SI20PB-6A15 FS","SI20GM-6H17,SI20GM-6H18,SI20GM-6H16,SI20QC-6H17,SI20QU-6H15,SI20---6A15#,SI20---6A15#,SI20MAA6A15,SI20QFB6H15,SI20GHD6H15,SI20GKB6H16,SI20GKB6H15,SI20SCB6A15,SI20QJA6A15,SI20QJA6A46,SI20MKQ6A15,SI20PCB6H15,SI20MBA6A15,SI20---6A15#,SI20MKW6H15,SI20MBA6F15,SI20PAR6A15,SI20PAH6H15,SI20PGB6H15,SI20PGB6H17,SI20MKG6A16,SI20PSB6A15,SI20MKA6A15,SI20PUS6A15,SI20PB-6A15",94,,98,,22,,23,,66,984,"HK1003 -Blackpoint D2 - Rev.0E DD30092021"
1-133,SI20UCA7-08,"START ERECTION CONTROL ROOM EQUIPMENT",5121,"HK1003-Rev.0E-3",TT_Mile,"55902",-,-,-,0,TK_NotStart,28/06/2022,,28/06/2022,,"SI20TP-180& FS,SI20UCA7-16 FS,SI--CP-4-28 FS","SI20TP-180&,SI20UCA7-16,SI--CP-4-28","SI20UCA7-15 FS","SI20UCA7-15",99,,99,,23,,23,,71,1120,"HK1003 -Blackpoint D2 - Rev.0E DD30092021"
1-134,SI20CYA8-30,"COMMISSIONING TELECOMMUNICATION UCA",5121,"HK1003-Rev.0E-3",TT_Task,"55902",-,-,-,0,TK_NotStart,13/05/2023,,02/06/2023,,"SI-PM-40 FS,SI20BUK8-50 FS,SI20TPI6A8-30 FS,SI20TPI21A8-30 FS,SI20B--8-52 FS,SI20B--8-50 FS","SI-PM-40,SI20BUK8-50,SI20TPI6A8-30,SI20TPI21A8-30,SI20B--8-52,SI20B--8-50","SI20MB-9-15 FS,SI--CYA8-25 SS","SI20MB-9-15,SI--CYA8-25",145,,147,,33,,34,,97,112,"HK1003 -Blackpoint D2 - Rev.0E DD30092021"
1-135,SI20MBR6-48,"FINISH WORKS / INSULATION/ TOUCH-UP DIFFUSER 20MBR",5121,"HK1003-Rev.0E-3",TT_Task,"55902",-,-,-,0,TK_NotStart,24/09/2022,,07/10/2022,,"SI20MBR6-35 FS","SI20MBR6-35","SI20MBR8-26 FS,SI20MBR7-15 FS,SI20MBR6-49 FS,SI20MBR6-49 FF","SI20MBR8-26,SI20MBR7-15,SI20MBR6-49,SI20MBR6-49",112,,113,,26,,26,,81,176,"HK1003 -Blackpoint D2 - Rev.0E DD30092021"
1-136,SI20MBR6-47,"WELDING / INSULATION / TOUCH-UP  DIFFUSOR 20MBR (before GT final position)",5121,"HK1003-Rev.0E-3",TT_Task,"55902",-,-,-,0,TK_NotStart,03/06/2022,,30/06/2022,,"SI20MBR6-15 FS","SI20MBR6-15","SI20MBR6-35 FS,SI20MBA6-35 FS","SI20MBR6-35,SI20MBA6-35",95,,99,,22,,23,,68,632,"HK1003 -Blackpoint D2 - Rev.0E DD30092021"
1-137,SP20MAX2-85,"CONTRACT INTO FORCE ST HYDRAULIC SYSTEM MAX",5121,"HK1003-Rev.0E-3",TT_Mile,"55902",-,-,-,100,TK_Complete,24/07/2021,24/07/2021,24/07/2021,24/07/2021,"SP20MAX2-81 FS,SP20MAX2-86 FS","SP20MAX2-81,SP20MAX2-86","SP20MAX3-25 FS","SP20MAX3-25",51,51,51,51,11,11,11,11,22,,"HK1003 -Blackpoint D2 - Rev.0E DD30092021"
1-138,SP20MAX2-81,"QUOTATION STAGE ST HYDRAULIC SYSTEM MAX",5121,"HK1003-Rev.0E-3",TT_Task,"55902",-,-,-,100,TK_Complete,12/06/2021,12/06/2021,23/07/2021,23/07/2021,"SP20MAX2-80 FS","SP20MAX2-80","SP20MAX2-85 FS","SP20MAX2-85",45,45,50,50,10,10,11,11,17,,"HK1003 -Blackpoint D2 - Rev.0E DD30092021"
1-139,SP20MAX2-80,"PREPARE TEC RFQ DOC ST HYDRAULIC SYSTEM MAX",5121,"HK1003-Rev.0E-3",TT_Task,"55902",-,-,-,100,TK_Complete,15/05/2021,15/05/2021,11/06/2021,11/06/2021,"SP20MAW2-80 SS","SP20MAW2-80","SP20MAX2-81 FS,SP20MAX2-86 FS","SP20MAX2-81,SP20MAX2-86",41,41,44,44,9,9,10,10,12,,"HK1003 -Blackpoint D2 - Rev.0E DD30092021"
1-140,SP20MAW2-85,"CONTRACT INTO FORCE GLAND STEAM CONDENSER MAW",5121,"HK1003-Rev.0E-3",TT_Mile,"55902",-,-,-,100,TK_Complete,16/07/2021,16/07/2021,16/07/2021,16/07/2021,"SP20MAV2-82 FS","SP20MAV2-82","SP20MAW3-25 FS,SP20MAW2-86 FS","SP20MAW3-25,SP20MAW2-86",49,49,49,49,11,11,11,11,22,,"HK1003 -Blackpoint D2 - Rev.0E DD30092021"
1-141,SP20MAV2-82,"QUOTATION STAGE GLAND STEAM CONDENSER MAW",5121,"HK1003-Rev.0E-3",TT_Task,"55902",-,-,-,100,TK_Complete,04/06/2021,04/06/2021,15/07/2021,15/07/2021,"SP20MAW2-80 FS","SP20MAW2-80","SP20MAW2-85 FS","SP20MAW2-85",43,43,49,49,10,10,11,11,16,,"HK1003 -Blackpoint D2 - Rev.0E DD30092021"
1-142,SP20MAW2-80,"PREPARE TEC RFQ DOC GLAND STEAM CONDENSER MAW",5121,"HK1003-Rev.0E-3",TT_Task,"55902",-,-,-,100,TK_Complete,07/05/2021,07/05/2021,03/06/2021,03/06/2021,"SP20MAV2-80 SS","SP20MAV2-80","SP20MAX2-80 SS,SP20MAV2-82 FS","SP20MAX2-80,SP20MAV2-82",39,39,43,43,9,9,10,10,11,,"HK1003 -Blackpoint D2 - Rev.0E DD30092021"
1-143,SP20MAV2-85,"CONTRACT INTO FORCE LUBE OIL MODULE MAV",5121,"HK1003-Rev.0E-3",TT_Mile,"55902",-,-,-,100,TK_Complete,29/07/2021,29/07/2021,29/07/2021,29/07/2021,"SP20MAV2-81 FS","SP20MAV2-81","SP20MAV3-25 FS,SP20MAV2-86 FS","SP20MAV3-25,SP20MAV2-86",51,51,51,51,12,12,12,12,23,,"HK1003 -Blackpoint D2 - Rev.0E DD30092021"
1-144,SP20MAV2-81,"QUOTATION STAGE LUBE OIL MODULE MAV",5121,"HK1003-Rev.0E-3",TT_Task,"55902",-,-,-,100,TK_Complete,04/06/2021,04/06/2021,28/07/2021,28/07/2021,"SP20MAV2-80 FS","SP20MAV2-80","SP20MAV2-85 FS","SP20MAV2-85",43,43,51,51,10,10,12,12,16,,"HK1003 -Blackpoint D2 - Rev.0E DD30092021"
1-145,SP20MAV2-80,"PREPARE TEC RFQ DOC LUBE OIL MODULE MAV",5121,"HK1003-Rev.0E-3",TT_Task,"55902",-,-,-,100,TK_Complete,07/05/2021,07/05/2021,03/06/2021,03/06/2021,"SP20MAN2-80 FS","SP20MAN2-80","SP20MAW2-80 SS,SP20MAV2-81 FS","SP20MAW2-80,SP20MAV2-81",39,39,43,43,9,9,10,10,11,,"HK1003 -Blackpoint D2 - Rev.0E DD30092021"
1-146,SP20MAN2-85,"CONTRACT INTO FORCE ST BYPASS VALVES MAN",5121,"HK1003-Rev.0E-3",TT_Mile,"55902",-,-,-,100,TK_Complete,03/08/2021,03/08/2021,03/08/2021,03/08/2021,"SP20MAN2-81 FS","SP20MAN2-81","SP20MAN3-26 FS","SP20MAN3-26",52,52,52,52,12,12,12,12,24,,"HK1003 -Blackpoint D2 - Rev.0E DD30092021"
1-147,SP20MAN2-81,"QUOTATION STAGE ST BYPASS VALVES MAN",5121,"HK1003-Rev.0E-3",TT_Task,"55902",-,-,-,100,TK_Complete,14/06/2021,14/06/2021,02/08/2021,02/08/2021,"SP20MAN2-80 FS","SP20MAN2-80","SP20MAN2-85 FS","SP20MAN2-85",45,45,52,52,10,10,12,12,17,,"HK1003 -Blackpoint D2 - Rev.0E DD30092021"
1-148,SP20MAN2-80,"PREPARE TEC RFQ DOC ST BYPASS VALVES MAN",5121,"HK1003-Rev.0E-3",TT_Task,"55902",-,-,-,100,TK_Complete,26/03/2021,26/03/2021,13/06/2021,13/06/2021,"SP20MAJ2-80 SS","SP20MAJ2-80","SP20MAV2-80 FS,SP20MAN2-81 FS","SP20MAV2-80,SP20MAN2-81",33,33,45,45,7,7,10,10,7,,"HK1003 -Blackpoint D2 - Rev.0E DD30092021"
1-149,SP20MAJ3-84,"DESIGN / MANUFACTURING AIR REMOVAL SYSTEM 20MAJ",5121,"HK1003-Rev.0E-3",TT_Task,"55902",-,-,-,45,TK_Active,11/06/2021,11/06/2021,14/02/2022,,"SP20MAJ2-85 FS,SP20MAJ2-85 SS","SP20MAJ2-85,SP20MAJ2-85","SP20MAJ3-70 FS","SP20MAJ3-70",44,44,80,,10,10,18,,16,1184,"HK1003 -Blackpoint D2 - Rev.0E DD30092021"
1-150,SP20MAJ2-85,"CONTRACT INTO FORCE  AIR REMOVAL SYSTEM MAJ",5121,"HK1003-Rev.0E-3",TT_Mile,"55902",-,-,-,100,TK_Complete,11/06/2021,11/06/2021,11/06/2021,11/06/2021,"SP20MAJ2-81 FS","SP20MAJ2-81","SP20MAJ3-84 FS,SP20MAJ2-86 FS,SP20MAJ3-84 SS","SP20MAJ3-84,SP20MAJ2-86,SP20MAJ3-84",44,44,44,44,10,10,10,10,16,,"HK1003 -Blackpoint D2 - Rev.0E DD30092021"
1-151,SP20MAJ2-81,"QUOTATION STAGE AIR REMOVAL SYSTEM MAJ",5121,"HK1003-Rev.0E-3",TT_Task,"55902",-,-,-,100,TK_Complete,30/04/2021,30/04/2021,10/06/2021,10/06/2021,"SP20MAJ2-80 FS","SP20MAJ2-80","SP20MAJ2-85 FS","SP20MAJ2-85",38,38,44,44,9,9,10,10,10,,"HK1003 -Blackpoint D2 - Rev.0E DD30092021"
1-152,SP20MAJ2-80,"PREPARE TEC RFQ DOC AIR REMOVAL SYSTEM MAJ",5121,"HK1003-Rev.0E-3",TT_Task,"55902",-,-,-,100,TK_Complete,26/03/2021,26/03/2021,29/04/2021,29/04/2021,"SI-----1-05 FS","SI-----1-05","SP20MAN2-80 SS,SP20MAJ2-81 FS","SP20MAN2-80,SP20MAJ2-81",33,33,38,38,7,7,9,9,7,,"HK1003 -Blackpoint D2 - Rev.0E DD30092021"
1-153,SI20MBK4E25,"TRANSPORT TURNING DEVICE 20MBK",5121,"HK1003-Rev.0E-3",TT_Task,"55902",-,-,-,0,TK_NotStart,30/04/2022,,24/06/2022,,"SP20MBK3B80 FS","SP20MBK3B80","SP20MBK4H40 FS","SP20MBK4H40",91,,98,,21,,23,,60,504,"HK1003 -Blackpoint D2 - Rev.0E DD30092021"
1-154,SP20MBK4-10,"LOGISTICS AND CUSTOMS PREPARATION TURNING DEVICE 20MBK",5121,"HK1003-Rev.0E-3",TT_Task,"55902",-,-,-,0,TK_NotStart,02/04/2022,,29/04/2022,,"SP20MBK3-70 FS","SP20MBK3-70","SP20MBK3B80 FS","SP20MBK3B80",87,,90,,20,,21,,55,504,"HK1003 -Blackpoint D2 - Rev.0E DD30092021"
1-155,SP20MBK4H40,"(OTD-OS) ON SITE TURNING DEVICE 20MBK",5121,"HK1003-Rev.0E-3",TT_FinMile,"55902",-,-,-,0,TK_NotStart,23/07/2022,,23/07/2022,,"SI20MBK4E25 FS","SI20MBK4E25","SI20MB-4-40 FS","SI20MB-4-40",103,,103,,24,,24,,74,272,"HK1003 -Blackpoint D2 - Rev.0E DD30092021"
1-156,SP20MBK3-70,"TIMES OF COMPLETION (FINAL DATA IN KANLOG) TURNING DEVICE 20MBK",5121,"HK1003-Rev.0E-3",TT_FinMile,"55902",-,-,-,0,TK_NotStart,01/04/2022,,01/04/2022,,"SI20MB-3-72 FS,SP20MBK3-25 FS","SI20MB-3-72,SP20MBK3-25","SI20MBA3-70 FS,SP20MBK4-10 FS","SI20MBA3-70,SP20MBK4-10",86,,86,,20,,20,,54,504,"HK1003 -Blackpoint D2 - Rev.0E DD30092021"
1-157,SI20---4-18,"LOGISTICS AND CUSTOMS PREPARATION GT INTERMEDIATE SHAFT 20MB-",5121,"HK1003-Rev.0E-3",TT_Task,"55902",-,-,-,0,TK_NotStart,02/04/2022,,29/04/2022,,"SP20MB-3C70 FS","SP20MB-3C70","SI20---3B89 FF,SI20---3B89 FS","SI20---3B89,SI20---3B89",87,,90,,20,,21,,55,184,"HK1003 -Blackpoint D2 - Rev.0E DD30092021"
1-158,SI20HB-6-40,"REMAINING EXTERNAL INSULATION FOR OUTLET DUCT HRSG20",5121,"HK1003-Rev.0E-3",TT_Task,"55902",-,-,-,0,TK_NotStart,01/12/2022,,11/01/2023,,"SI20HA-4B46 FS,SI20HB-6-42 FS,SI20HB-6-38 FS,SI20HB-4C40 FS,SI20HA-4D30 FS,SI20HB-6-85 SS","SI20HA-4B46,SI20HB-6-42,SI20HB-6-38,SI20HB-4C40,SI20HA-4D30,SI20HB-6-85","SI20HB-8-25 FS","SI20HB-8-25",121,,127,,28,,29,,86,912,"HK1003 -Blackpoint D2 - Rev.0E DD30092021"
1-159,SI20HA-6D18,"ALIGNMENT HP VESSEL / IP AND LP DRUM",5121,"HK1003-Rev.0E-3",TT_Task,"55902",-,-,-,0,TK_NotStart,04/05/2022,,05/05/2022,,"SI20HA-6D17 FS","SI20HA-6D17","SI20HA-6-55 FS,SI20HB-8-26 FS,SI20UVM5-05 FS,SI20HA-6A48 FS,SI20HB-6E29 FS,SI20HB-8-18 FS,SI20HB-6E27 FS","SI20HA-6-55,SI20HB-8-26,SI20UVM5-05,SI20HA-6A48,SI20HB-6E29,SI20HB-8-18,SI20HB-6E27",91,,91,,21,,21,,61,0,"HK1003 -Blackpoint D2 - Rev.0E DD30092021"
1-160,SI20HB-6C28,"ERECTION DRUM SUPPORT STEEL / ERECTION TOP PLATFORMS FOR DRUM INSTALL",5121,"HK1003-Rev.0E-3",TT_Task,"55902",-,-,-,0,TK_NotStart,29/04/2022,,01/05/2022,,"SI20HA-6C22 FS,SI20HB-4A41 FS,SI20HB-4B40 FS","SI20HA-6C22,SI20HB-4A41,SI20HB-4B40","SI20HA-6D17 FS,SI20HA-6-26 FS,SI20HB-6C23 FS","SI20HA-6D17,SI20HA-6-26,SI20HB-6C23",90,,91,,21,,21,,60,0,"HK1003 -Blackpoint D2 - Rev.0E DD30092021"
1-161,SI20HA-6C24,"PREPARATIONS FOR MODULE LOADING HRSG20",5121,"HK1003-Rev.0E-3",TT_Task,"55902",-,-,-,0,TK_NotStart,18/03/2022,,24/03/2022,,"SI20HB-6-19 FS,SI20HB-8-27 FS","SI20HB-6-19,SI20HB-8-27","SI20HA-6C25 FS","SI20HA-6C25",84,,85,,19,,20,,53,56,"HK1003 -Blackpoint D2 - Rev.0E DD30092021"
1-162,SI20HA-6C25,"(RFE) MODULE LIFTING 20",5121,"HK1003-Rev.0E-3",TT_FinMile,"55902",-,-,-,0,TK_NotStart,25/03/2022,,25/03/2022,,"SI20HA-4G40 FS,SI20HA-6C24 FS,SI20HB-5-25 FS,SI20HB-6-19 FS,SI20HB-6A17 FS","SI20HA-4G40,SI20HA-6C24,SI20HB-5-25,SI20HB-6-19,SI20HB-6A17","SI20HA-6C22 FS","SI20HA-6C22",85,,85,,20,,20,,53,48,"HK1003 -Blackpoint D2 - Rev.0E DD30092021"
1-163,SI20HB-6C26,"ERECTION TOP PLATFORMSHRSG20",5121,"HK1003-Rev.0E-3",TT_Task,"55902",-,-,-,0,TK_NotStart,12/03/2022,,25/03/2022,,"SI20HB-6C24 FS,SI20HB-6C25 FF","SI20HB-6C24,SI20HB-6C25","SI20HB-6C23 FS,SI20BZP7-125 FS","SI20HB-6C23,SI20BZP7-125",84,,85,,19,,20,,52,1064,"HK1003 -Blackpoint D2 - Rev.0E DD30092021"
1-164,SI20HB-6C25,"PRE-ASSEMBLY TOP PLATFORMS HRSG20",5121,"HK1003-Rev.0E-3",TT_Task,"55902",-,-,-,0,TK_NotStart,19/02/2022,,11/03/2022,,"SI20HB-6C24 FF,SI20HB-6A17 SS,SI20HB-4B40 FS","SI20HB-6C24,SI20HB-6A17,SI20HB-4B40","SI20HB-6C26 FF","SI20HB-6C26",81,,83,,18,,19,,50,1120,"HK1003 -Blackpoint D2 - Rev.0E DD30092021"
1-165,SI20HB-6C24,"ERECTION STAIRCASE 1 (STACK) HRSG20",5121,"HK1003-Rev.0E-3",TT_Task,"55902",-,-,-,0,TK_NotStart,05/03/2022,,11/03/2022,,"SI20HB-4B40 FS,SI20HB-6-18 FS","SI20HB-4B40,SI20HB-6-18","SI20HB-6C26 FS,SI20HB-6C25 FF","SI20HB-6C26,SI20HB-6C25",83,,83,,19,,19,,52,1064,"HK1003 -Blackpoint D2 - Rev.0E DD30092021"
1-166,SI20HB-6-19,"MAIN CASING ERECTION & WELDING HRSG20",5121,"HK1003-Rev.0E-3",TT_Task,"55902",-,-,-,0,TK_NotStart,01/02/2022,,14/03/2022,,"SI20HB-6A17 SS","SI20HB-6A17","SI20HA-6C25 FS,SI20HB-5-25 FF,SI20HB-8-27 SS,SI20HA-6C24 FS","SI20HA-6C25,SI20HB-5-25,SI20HB-8-27,SI20HA-6C24",78,,84,,18,,19,,47,56,"HK1003 -Blackpoint D2 - Rev.0E DD30092021"
1-167,SI20HB-6-18,"STEEL ALIGNMENT AND BOLT TIGHTENING HRSG20",5121,"HK1003-Rev.0E-3",TT_Task,"55902",-,-,-,0,TK_NotStart,31/01/2022,,04/03/2022,,"SI20HB-6A17 FF","SI20HB-6A17","SI20HB-5-25 FS,SI20HB-6E29 FS,SI20HB-6C24 FS","SI20HB-5-25,SI20HB-6E29,SI20HB-6C24",78,,82,,18,,19,,47,160,"HK1003 -Blackpoint D2 - Rev.0E DD30092021"
1-168,SI20CJF2-82,"(DF) I&C DATA HRSG",5121,"HK1003-Rev.0E-3",TT_FinMile,"55902",-,-,-,100,TK_Complete,01/04/2021,01/04/2021,01/04/2021,01/04/2021,"SI20CJF2-15 FS","SI20CJF2-15","SI--CKA2-00 FS,SI--HA-2-70 FS,SI--L--2-70 FS","SI--CKA2-00,SI--HA-2-70,SI--L--2-70",34,34,34,34,8,8,8,8,7,,"HK1003 -Blackpoint D2 - Rev.0E DD30092021"
1-169,SI20CJF2-15,"BASIC DESIGN /QUOTATION STAGE/ ODERING ELECTRICAL / I&C EQUIPMENT HRSG",5121,"HK1003-Rev.0E-3",TT_Task,"55902",-,-,-,100,TK_Complete,22/01/2021,22/01/2021,01/04/2021,01/04/2021,"SI--HA-2-10 FF,SI--HA-2-95 FS,SI--3332-27 FS,SI--HA-2-85 FS","SI--HA-2-10,SI--HA-2-95,SI--3332-27,SI--HA-2-85","SI20CJF2-82 FS,SI--HA-2-70 FS,SI20CJF3-25 FS","SI20CJF2-82,SI--HA-2-70,SI20CJF3-25",24,24,34,34,5,5,8,8,2,,"HK1003 -Blackpoint D2 - Rev.0E DD30092021"
1-170,SI--HA-3E25,"BASIC / DETAIL DESIGN / ORDERING / DELIVERY / MANUFACTURING PIPING HRSG20_Last Part (SB <= 3'')",5121,"HK1003-Rev.0E-3",TT_Task,"55902",-,-,-,56,TK_Active,28/01/2021,28/01/2021,06/04/2022,,"SI--HA-2A40 FS,SI-----1-05 FS,SI--HA-2-85 FS","SI--HA-2A40,SI-----1-05,SI--HA-2-85","SI20HA-3-15# FF,SI20HA-3B73 FS","SI20HA-3-15#,SI20HA-3B73",25,25,87,,6,6,20,,3,152,"HK1003 -Blackpoint D2 - Rev.0E DD30092021"
1-171,SI--HA-3E27,"BASIC / DETAIL DESIGN / ORDERING / DELIVERY / MANUFACTURING PIPING HRSG20_2nd part (LB HIGH ALLOY STEEL)",5121,"HK1003-Rev.0E-3",TT_Task,"55902",-,-,-,69,TK_Active,28/01/2021,28/01/2021,19/01/2022,,"SI--HA-2A40 FS,SI-----1-05 FS,SI--HA-2-85 FS","SI--HA-2A40,SI-----1-05,SI--HA-2-85","SI20HA-3B74 FS","SI20HA-3B74",25,25,76,,6,6,17,,3,384,"HK1003 -Blackpoint D2 - Rev.0E DD30092021"
1-172,SI20HB-3E25,"DETAIL DESIGN INLET DUCT HRSG20",5121,"HK1003-Rev.0E-3",TT_Task,"55902",-,-,-,100,TK_Complete,30/01/2021,30/01/2021,12/03/2021,12/03/2021,"SI--HB-3-25 FF,SI--HA-2-85 FS","SI--HB-3-25,SI--HA-2-85","SI20HB-3E26 FS","SI20HB-3E26",26,26,31,31,6,6,7,7,3,,"HK1003 -Blackpoint D2 - Rev.0E DD30092021"
1-173,SI20HB-3F25,"DETAIL DESIGN OUTLET DUCT HRSG 20",5121,"HK1003-Rev.0E-3",TT_Task,"55902",-,-,-,100,TK_Complete,28/01/2021,28/01/2021,27/02/2021,27/02/2021,"SI--HB-2D80 SS,SI--HA-2-85 FS","SI--HB-2D80,SI--HA-2-85","SI20HB-3F26 FS","SI20HB-3F26",25,25,30,30,6,6,7,7,3,,"HK1003 -Blackpoint D2 - Rev.0E DD30092021"
1-174,SI20HB-3D25,"DETAIL DESIGN STACK HRSG 20",5121,"HK1003-Rev.0E-3",TT_Task,"55902",-,-,-,100,TK_Complete,28/01/2021,28/01/2021,10/04/2021,10/04/2021,"SI--HB-2D80 SS,SI--HA-2-85 FS","SI--HB-2D80,SI--HA-2-85","SI20HB-3D26 FS","SI20HB-3D26",25,25,36,36,6,6,8,8,3,,"HK1003 -Blackpoint D2 - Rev.0E DD30092021"
1-175,SI--HB-2D80,"QUOTATION STAGE / ORDERING STACK HRSG incl. OUTLET DUCT",5121,"HK1003-Rev.0E-3",TT_Task,"55902",-,-,-,100,TK_Complete,01/01/2021,01/01/2021,11/02/2021,11/02/2021,"SI--HB-2D15 SS,SI--HA-2-85 FS","SI--HB-2D15,SI--HA-2-85","SI20HB-3F25 SS,SI20HB-3D25 SS,SI--HB-2D62 FS","SI20HB-3F25,SI20HB-3D25,SI--HB-2D62",21,21,27,27,5,5,6,6,1,,"HK1003 -Blackpoint D2 - Rev.0E DD30092021"
1-176,SI20HA-4B14,"LOGISTICS AND CUSTOMS PREPARATION PIPING HRSG20_2nd Part (LB HIGH ALLOY STEEL)",5121,"HK1003-Rev.0E-3",TT_Task,"55902",-,-,-,0,TK_NotStart,20/01/2022,,16/02/2022,,"SI20HA-3B74 FS","SI20HA-3B74","SI20HA-3B81 FS","SI20HA-3B81",76,,80,,17,,18,,46,384,"HK1003 -Blackpoint D2 - Rev.0E DD30092021"
1-177,SI20HA-3B74,"TIMES OF COMPLETION (FINAL DATA IN KANLOG) PIPING HRSG20_2nd Part (LB HIGH ALLOY STEEL)",5121,"HK1003-Rev.0E-3",TT_FinMile,"55902",-,-,-,0,TK_NotStart,19/01/2022,,19/01/2022,,"SI--HA-3E27 FS","SI--HA-3E27","SI20HA-4B14 FS","SI20HA-4B14",76,,76,,17,,17,,46,384,"HK1003 -Blackpoint D2 - Rev.0E DD30092021"
1-178,SI20HA-3B81,"(RFS) READY FOR SHIPMENT PIPING HRSG20_2nd Part (LB HIGH ALLOY STEEL)",5121,"HK1003-Rev.0E-3",TT_FinMile,"55902",-,-,-,0,TK_NotStart,16/02/2022,,16/02/2022,,"SI20HA-4B14 FS","SI20HA-4B14","SI20HA-4B27 FS","SI20HA-4B27",80,,80,,18,,18,,50,384,"HK1003 -Blackpoint D2 - Rev.0E DD30092021"
1-179,SI20HA-4B27,"TRANSPORT PIPING HRSG20_2nd Part (LB HIGH ALLOY STEEL)",5121,"HK1003-Rev.0E-3",TT_Task,"55902",-,-,-,0,TK_NotStart,17/02/2022,,18/03/2022,,"SI20HA-3B81 FS","SI20HA-3B81","SI20HA-4B42 FS","SI20HA-4B42",80,,84,,18,,19,,50,384,"HK1003 -Blackpoint D2 - Rev.0E DD30092021"
1-180,SI20HA-4B42,"(OTD-OS) ON SITE PIPING HRSG20_2nd Part (LB HIGH ALLOY STEEL)",5121,"HK1003-Rev.0E-3",TT_FinMile,"55902",-,-,-,0,TK_NotStart,18/03/2022,,18/03/2022,,"SI20HA-4B27 FS","SI20HA-4B27","SI20HB-6-14 FS","SI20HB-6-14",84,,84,,19,,19,,53,384,"HK1003 -Blackpoint D2 - Rev.0E DD30092021"
1-181,SI20HA-4B13,"LOGISTICS AND CUSTOMS PREPARATION PIPING HRSG20_Last Part (SB <= 3'')",5121,"HK1003-Rev.0E-3",TT_Task,"55902",-,-,-,0,TK_NotStart,07/04/2022,,04/05/2022,,"SI20HA-3B73 FS","SI20HA-3B73","SI20HA-3B82 FS","SI20HA-3B82",87,,91,,20,,21,,56,152,"HK1003 -Blackpoint D2 - Rev.0E DD30092021"
1-182,SI20HA-3B73,"TIMES OF COMPLETION (FINAL DATA IN KANLOG) PIPING HRSG20_Last Part (SB <= 3'')",5121,"HK1003-Rev.0E-3",TT_FinMile,"55902",-,-,-,0,TK_NotStart,06/04/2022,,06/04/2022,,"SI--HA-3E25 FS","SI--HA-3E25","SI20HA-4B13 FS","SI20HA-4B13",87,,87,,20,,20,,56,152,"HK1003 -Blackpoint D2 - Rev.0E DD30092021"
1-183,SI20HA-3B82,"(RFS) READY FOR SHIPMENT PIPING HRSG20_Last Part (SB <= 3'')",5121,"HK1003-Rev.0E-3",TT_FinMile,"55902",-,-,-,0,TK_NotStart,04/05/2022,,04/05/2022,,"SI20HA-4B13 FS","SI20HA-4B13","SI20HA-4B26 FS","SI20HA-4B26",91,,91,,21,,21,,61,152,"HK1003 -Blackpoint D2 - Rev.0E DD30092021"
1-184,SI20HA-4B26,"TRANSPORT PIPING HRSG20_Last Part (SB <= 3'')",5121,"HK1003-Rev.0E-3",TT_Task,"55902",-,-,-,0,TK_NotStart,05/05/2022,,03/06/2022,,"SI20HA-3B82 FS","SI20HA-3B82","SI20HA-4B41 FS","SI20HA-4B41",91,,95,,21,,22,,62,152,"HK1003 -Blackpoint D2 - Rev.0E DD30092021"
1-185,SI20HA-4B41,"(OTD-OS) ON SITE PIPING HRSG20_Last Part (SB <= 3'')",5121,"HK1003-Rev.0E-3",TT_FinMile,"55902",-,-,-,0,TK_NotStart,03/06/2022,,03/06/2022,,"SI20HA-4B26 FS","SI20HA-4B26","SI20HB-6-15 FS","SI20HB-6-15",95,,95,,22,,22,,68,152,"HK1003 -Blackpoint D2 - Rev.0E DD30092021"
1-186,SI20HA-3D25,"DETAIL DESIGN DRUMS HRSG20",5121,"HK1003-Rev.0E-3",TT_Task,"55902",-,-,-,100,TK_Complete,28/01/2021,28/01/2021,27/02/2021,27/02/2021,"SI--HA-2-85 FS,SI--HA-2-85 SS,SI-----1-03 FF,SI-----1-03 FS,SI20---2M10 FF,SI20---2M10 FS,SI--HA-2-10 FF,SI--HA-2-10 FS","SI--HA-2-85,SI--HA-2-85,SI-----1-03,SI-----1-03,SI20---2M10,SI20---2M10,SI--HA-2-10,SI--HA-2-10","SI20HA-3D26 FS","SI20HA-3D26",25,25,30,30,6,6,7,7,3,,"HK1003 -Blackpoint D2 - Rev.0E DD30092021"
1-187,SI--HB-2D62,"(DF) INPUT FOR MS3 STACK HRSG incl. OUTLET DUCT",5121,"HK1003-Rev.0E-3",TT_FinMile,"55902",-,-,-,100,TK_Complete,11/02/2021,11/02/2021,11/02/2021,11/02/2021,"SI--HB-2D80 FS,SI--HB-2D15 FS","SI--HB-2D80,SI--HB-2D15","SI--UHA2-60 FS,SI--HB-2A60 FS","SI--UHA2-60,SI--HB-2A60",27,27,27,27,6,6,6,6,4,,"HK1003 -Blackpoint D2 - Rev.0E DD30092021"
1-188,SI--HB-2B05,"ERECTION MANUALS ON SITE STEEL STRUCTURE HRSG",5121,"HK1003-Rev.0E-3",TT_FinMile,"55902",-,-,-,0,TK_NotStart,09/12/2021,,09/12/2021,,"SI20HB-3A81 FS","SI20HB-3A81","SI20HB-6A17 FS","SI20HB-6A17",70,,70,,16,,16,,41,136,"HK1003 -Blackpoint D2 - Rev.0E DD30092021"
1-189,SI--HB-2B62,"FINAL ERECTION CONCEPT HRSG",5121,"HK1003-Rev.0E-3",TT_FinMile,"55902",-,-,-,100,TK_Complete,26/02/2021,26/02/2021,26/02/2021,26/02/2021,"SI--HB-2B61 FS","SI--HB-2B61","SI20HB-6A17 FS","SI20HB-6A17",29,29,29,29,6,6,6,6,5,,"HK1003 -Blackpoint D2 - Rev.0E DD30092021"
1-190,SI--HB-2B61,"PRELIMINARY ERECTION CONCEPT HRSG",5121,"HK1003-Rev.0E-3",TT_FinMile,"55902",-,-,-,100,TK_Complete,27/01/2021,27/01/2021,27/01/2021,27/01/2021,"SI--HA-2-85 FS","SI--HA-2-85","SI--HB-2B62 FS,SI--HB-3-25 FS","SI--HB-2B62,SI--HB-3-25",25,25,25,25,5,5,5,5,3,,"HK1003 -Blackpoint D2 - Rev.0E DD30092021"
1-191,SI20UHA2B-14,"(OTD-OS) ON SITE EMBEDDED PARTS HRSG20",5121,"HK1003-Rev.0E-3",TT_FinMile,"55902",-,-,-,100,TK_Complete,28/09/2021,28/09/2021,28/09/2021,28/09/2021,"SI20UHA2B-13 FS","SI20UHA2B-13","SI20UHA5-15.02 FS","SI20UHA5-15.02",60,60,60,60,14,14,14,14,30,,"HK1003 -Blackpoint D2 - Rev.0E DD30092021"
1-192,SI20UHA2B-13,"TRANSPORT EMBEDDED PARTS HRSG20",5121,"HK1003-Rev.0E-3",TT_Task,"55902",-,-,-,100,TK_Complete,04/08/2021,04/08/2021,28/09/2021,28/09/2021,"SI20UHA2B-12 FS","SI20UHA2B-12","SI20UHA2B-14 FS","SI20UHA2B-14",52,52,60,60,12,12,14,14,24,,"HK1003 -Blackpoint D2 - Rev.0E DD30092021"
1-193,SI--HA-2-83,"PROCESS DOCUMENTS FOR RFQ HRSG",5121,"HK1003-Rev.0E-3",TT_FinMile,"55902",-,-,-,100,TK_Complete,11/12/2020,11/12/2020,11/12/2020,11/12/2020,"SI--HA-2-92 FF,SI--HA-2-82 FF","SI--HA-2-92,SI--HA-2-82","SI--HA-2-86 FS","SI--HA-2-86",18,18,18,18,4,4,4,4,1,,"HK1003 -Blackpoint D2 - Rev.0E DD30092021"
1-194,SI--HA-2-90,"FINAL NEGOTIATION HRSG",5121,"HK1003-Rev.0E-3",TT_Task,"55902",-,-,-,100,TK_Complete,15/01/2021,15/01/2021,26/01/2021,26/01/2021,"SI--HA-2-84 FS,SI--HA-2-86 FS,SI--HA-2-88 FS,SI-----1-05 FS","SI--HA-2-84,SI--HA-2-86,SI--HA-2-88,SI-----1-05","SI--HA-2-85 FS","SI--HA-2-85",23,23,25,25,5,5,5,5,1,,"HK1003 -Blackpoint D2 - Rev.0E DD30092021"
1-195,SI--HA-2-88,"HRSG OFFER AVAILABLE",5121,"HK1003-Rev.0E-3",TT_FinMile,"55902",-,-,-,100,TK_Complete,05/12/2020,05/12/2020,05/12/2020,05/12/2020,"SI--HA-2-82 FS,SI--3331-33 FS","SI--HA-2-82,SI--3331-33","SI--HA-2-86 FS,SI--HA-2-90 FS","SI--HA-2-86,SI--HA-2-90",18,18,18,18,4,4,4,4,1,,"HK1003 -Blackpoint D2 - Rev.0E DD30092021"
1-196,SI--HA-2-87,"SPECIFICATION OF VALVES",5121,"HK1003-Rev.0E-3",TT_FinMile,"55902",-,-,-,100,TK_Complete,28/11/2020,28/11/2020,28/11/2020,28/11/2020,"SI--HA-2-82 FS","SI--HA-2-82","SI--HA-2-86 FS","SI--HA-2-86",17,17,17,17,3,3,3,3,0,,"HK1003 -Blackpoint D2 - Rev.0E DD30092021"
1-197,SI--HA-2-84,"FIRE & EXPLOSION PROTECTION CONCEPT",5121,"HK1003-Rev.0E-3",TT_FinMile,"55902",-,-,-,100,TK_Complete,28/11/2020,28/11/2020,28/11/2020,28/11/2020,"SI--SG-2-10 FS,SI--HA-2-82 FS","SI--SG-2-10,SI--HA-2-82","SI--HA-2-90 FS","SI--HA-2-90",17,17,17,17,3,3,3,3,0,,"HK1003 -Blackpoint D2 - Rev.0E DD30092021"
1-198,SI--HA-2-99,"NOISE PROTECTION CONCEPT HRSG",5121,"HK1003-Rev.0E-3",TT_FinMile,"55902",-,-,-,100,TK_Complete,11/02/2021,11/02/2021,11/02/2021,11/02/2021,"SI--HA-2-81 FS,SI-----1-05 FS","SI--HA-2-81,SI-----1-05","SI20HB-3A25 FS,SI--2222-71 FS","SI20HB-3A25,SI--2222-71",27,27,27,27,6,6,6,6,4,,"HK1003 -Blackpoint D2 - Rev.0E DD30092021"
1-199,SI--HA-2-98,"P&ID's, DATA SHEETS & LIFE TIME DESIGN CRITERIA FOR INQUIRY & ORDERING HRSG AVAILABLE",5121,"HK1003-Rev.0E-3",TT_FinMile,"55902",-,-,-,100,TK_Complete,14/08/2020,14/08/2020,14/08/2020,14/08/2020,"SI--HA-2-81 FS","SI--HA-2-81","SI--HA-2-82 FS","SI--HA-2-82",1,1,1,1,0,0,0,0,0,,"HK1003 -Blackpoint D2 - Rev.0E DD30092021"
1-200,SI--HA-2-82,"OFFER PREPARATION BY HRSG SUPPLIER",5121,"HK1003-Rev.0E-3",TT_Task,"55902",-,-,-,100,TK_Complete,03/11/2020,03/11/2020,04/12/2020,04/12/2020,"SI--HA-2-98 FS,SI--HA-2-96 FS,SI--HA-2-97 FS,SI--HA-2-81 FS","SI--HA-2-98,SI--HA-2-96,SI--HA-2-97,SI--HA-2-81","SI--HA-2-83 FF,SI--HA-2-88 FS,SI--HA-2-87 FS,SI--HA-2-84 FS,SI--HA-2-93 FS,SI--HA-2-92 FS,SI--HA-2-80 FS,SI--HA-2A86 FS,SI--3331-33 FS,SI--3331-34 FS","SI--HA-2-83,SI--HA-2-88,SI--HA-2-87,SI--HA-2-84,SI--HA-2-93,SI--HA-2-92,SI--HA-2-80,SI--HA-2A86,SI--3331-33,SI--3331-34",13,13,17,17,3,3,4,4,0,,"HK1003 -Blackpoint D2 - Rev.0E DD30092021"
1-201,SI--HA-2-97,"GENERAL DESIGN CRITERIA FOR STRUCTURAL ENGINEERING FINALISED FOR HRSG ORDER",5121,"HK1003-Rev.0E-3",TT_FinMile,"55902",-,-,-,100,TK_Complete,14/08/2020,14/08/2020,14/08/2020,14/08/2020,"SI--HA-2-81 FS","SI--HA-2-81","SI--HA-2-82 FS","SI--HA-2-82",1,1,1,1,0,0,0,0,0,,"HK1003 -Blackpoint D2 - Rev.0E DD30092021"
1-202,SI--HA-2-96,"PROJECT SPEC. GENERAL TCC`S AVAILABLE",5121,"HK1003-Rev.0E-3",TT_FinMile,"55902",-,-,-,100,TK_Complete,14/08/2020,14/08/2020,14/08/2020,14/08/2020,"SI--HA-2-81 FS","SI--HA-2-81","SI--HA-2-82 FS","SI--HA-2-82",1,1,1,1,0,0,0,0,0,,"HK1003 -Blackpoint D2 - Rev.0E DD30092021"
1-203,SI--HA-2-79,"START OFFER PREPARATION HRSG",5121,"HK1003-Rev.0E-3",TT_Mile,"55902",-,-,-,100,TK_Complete,01/08/2020,01/08/2020,01/08/2020,01/08/2020,"SI-----1-01 FS,SI-----1-03 FS","SI-----1-01,SI-----1-03","SI--HA-2-81 FS","SI--HA-2-81",0,0,0,0,0,0,0,0,0,,"HK1003 -Blackpoint D2 - Rev.0E DD30092021"
1-204,SI-UZA2-45,"COMPOSITE DRAWING RING ROAD INCL. UNDERGROUND (U/G) DRAINAGE PART 2",5121,"HK1003-Rev.0E-3",TT_Task,"55902",-,-,-,100,TK_Complete,22/02/2021,22/02/2021,29/05/2021,29/05/2021,"SI-UZA2-10 FS","SI-UZA2-10","SI-UZA2-55 FS,SI-UZA2-50 FS,SI-UZA2-55 FF","SI-UZA2-55,SI-UZA2-50,SI-UZA2-55",29,29,43,43,6,6,10,10,5,,"HK1003 -Blackpoint D2 - Rev.0E DD30092021"
1-205,SI20---4-12,"LOGISTICS AND CUSTOMS PREPARATION OFFRACK / YARD LOT 6",5121,"HK1003-Rev.0E-3",TT_Task,"55902",-,-,-,0,TK_NotStart,24/07/2022,,20/08/2022,,"SI20---3-72 FS","SI20---3-72","SI20---3B82 FS","SI20---3B82",103,,107,,24,,24,,75,1112,"HK1003 -Blackpoint D2 - Rev.0E DD30092021"
1-206,SI20---3-72,"TIMES OF COMPLETION (FINAL DATA IN KANLOG) FOR OFFRACK PIPING LOT 6",5121,"HK1003-Rev.0E-3",TT_FinMile,"55902",-,-,-,0,TK_NotStart,23/07/2022,,23/07/2022,,"SI20---3B95 FS","SI20---3B95","SI20---4-12 FS","SI20---4-12",103,,103,,24,,24,,74,1112,"HK1003 -Blackpoint D2 - Rev.0E DD30092021"
1-207,SI20---4-11,"LOGISTICS AND CUSTOMS PREPARATION OFFRACK / YARD LOT 5",5121,"HK1003-Rev.0E-3",TT_Task,"55902",-,-,-,0,TK_NotStart,04/03/2022,,31/03/2022,,"SI20---3-71 FS","SI20---3-71","SI20---3B81 FS","SI20---3B81",82,,86,,19,,20,,51,688,"HK1003 -Blackpoint D2 - Rev.0E DD30092021"
1-208,SI20---3-71,"TIMES OF COMPLETION (FINAL DATA IN KANLOG) FOR OFFRACK PIPING LOT 5",5121,"HK1003-Rev.0E-3",TT_FinMile,"55902",-,-,-,0,TK_NotStart,03/03/2022,,03/03/2022,,"SI20---3B44 FS,SI20---3B94 FS","SI20---3B44,SI20---3B94","SI20---3M71 FS,SI20---4-11 FS","SI20---3M71,SI20---4-11",82,,82,,19,,19,,51,208,"HK1003 -Blackpoint D2 - Rev.0E DD30092021"
1-209,SI20---4-10,"LOGISTICS AND CUSTOMS PREPARATION OFFRACK / YARD LOT 4",5121,"HK1003-Rev.0E-3",TT_Task,"55902",-,-,-,0,TK_NotStart,03/02/2022,,02/03/2022,,"SI20---3-70 FS","SI20---3-70","SI20---3B80 FS","SI20---3B80",78,,82,,18,,19,,47,128,"HK1003 -Blackpoint D2 - Rev.0E DD30092021"
1-210,SI20---3-70,"TIMES OF COMPLETION (FINAL DATA IN KANLOG) FOR OFFRACK PIPING LOT 4",5121,"HK1003-Rev.0E-3",TT_FinMile,"55902",-,-,-,0,TK_NotStart,02/02/2022,,02/02/2022,,"SI20-1P343 FS","SI20-1P343","SI20---4-10 FS","SI20---4-10",78,,78,,18,,18,,47,128,"HK1003 -Blackpoint D2 - Rev.0E DD30092021"
1-211,SI----P3A93,"FABRICATION MEDIUM LEAD SUPPORT ITEMS (100%)",5121,"HK1003-Rev.0E-3",TT_Task,"55902",-,-,-,97,TK_Active,24/07/2021,24/07/2021,01/10/2021,,"SI-----2H85 FS","SI-----2H85","SI----P3A92 FF","SI----P3A92",51,51,60,,11,11,14,,22,616,"HK1003 -Blackpoint D2 - Rev.0E DD30092021"
1-212,SI----P4A27,"TRANSPORT MEDIUM LEAD SUPPORT ITEMS (100%)",5121,"HK1003-Rev.0E-3",TT_Task,"55902",-,-,-,0,TK_NotStart,02/10/2021,,19/11/2021,,"SI----P3A92 FS","SI----P3A92","SI20---3B52 FS,SI20---3B45 FS,SI20---3B37 FS","SI20---3B52,SI20---3B45,SI20---3B37",61,,67,,14,,15,,31,616,"HK1003 -Blackpoint D2 - Rev.0E DD30092021"
1-213,SI20MBA2D05,"ERECTION MANUALS ON SITE WASH WATER TANK MBA",5121,"HK1003-Rev.0E-3",TT_Mile,"55902",-,-,-,0,TK_NotStart,22/10/2022,,22/10/2022,,"SI20MBA3-80 FS","SI20MBA3-80","SI20MBA6D15 FS","SI20MBA6D15",116,,116,,27,,27,,84,224,"HK1003 -Blackpoint D2 - Rev.0E DD30092021"
1-214,SI20MBA2D86,"(DF) INPUT FOR MS3 WASH WATER TANK 20MBA (from D1)",5121,"HK1003-Rev.0E-3",TT_FinMile,"55902",-,-,-,100,TK_Complete,15/09/2021,15/09/2021,15/09/2021,15/09/2021,"SI--UM-2-35 FS","SI--UM-2-35","SI20MBA3-25 FS","SI20MBA3-25",58,58,58,58,13,13,13,13,29,,"HK1003 -Blackpoint D2 - Rev.0E DD30092021"
1-215,SI20MBA3-25,"DETAIL DESIGN WASH WATER TANK 20MBA",5121,"HK1003-Rev.0E-3",TT_Task,"55902",-,-,-,100,TK_Complete,16/09/2021,16/09/2021,29/09/2021,29/09/2021,"SI20MBA2D85 FS,SI20MBA2D86 FS","SI20MBA2D85,SI20MBA2D86","SI20MBA3-84 FS","SI20MBA3-84",58,58,60,60,13,13,14,14,29,,"HK1003 -Blackpoint D2 - Rev.0E DD30092021"
1-216,SI20LBG2C05,"ERECTION MANUALS ON SITE EL. SUPERHEATER LBG",5121,"HK1003-Rev.0E-3",TT_Mile,"55902",-,-,-,0,TK_NotStart,28/03/2022,,28/03/2022,,"SI20LBG3C80 FS","SI20LBG3C80","SI20LBG6C15 FS","SI20LBG6C15",86,,86,,20,,20,,54,616,"HK1003 -Blackpoint D2 - Rev.0E DD30092021"
1-217,SI20LBG3C25,"DETAIL DESIGN EL. SUPERHEATER 20LBG",5121,"HK1003-Rev.0E-3",TT_Task,"55902",-,-,-,100,TK_Complete,07/06/2021,07/06/2021,27/06/2021,27/06/2021,"SI20LBG2C85 FS","SI20LBG2C85","SI20LBG3C26 FS","SI20LBG3C26",44,44,47,47,10,10,11,11,16,,"HK1003 -Blackpoint D2 - Rev.0E DD30092021"
1-218,SI20LBG2C86,"DESIGN DATA SHEETS EL. SUPERHEATER LBG",5121,"HK1003-Rev.0E-3",TT_Task,"55902",-,-,-,100,TK_Complete,29/01/2021,29/01/2021,18/02/2021,18/02/2021,"SI--L--2-05 SS,SI--HA-2A86 FS,SI-----1-05 FS","SI--L--2-05,SI--HA-2A86,SI-----1-05","SI20LBG2C75 FF","SI20LBG2C75",25,25,28,28,6,6,6,6,3,,"HK1003 -Blackpoint D2 - Rev.0E DD30092021"
1-219,SI20SCA2-05,"ERECTION MANUALS ON SITE AIR COMPRESSOR SYSTEM SCA",5121,"HK1003-Rev.0E-3",TT_Mile,"55902",-,-,-,0,TK_NotStart,15/06/2022,,15/06/2022,,"SI20SCA3-26 SS","SI20SCA3-26","SI20SCA6-15 FS,SI20SCA3-80 FS","SI20SCA6-15,SI20SCA3-80",97,,97,,22,,22,,69,288,"HK1003 -Blackpoint D2 - Rev.0E DD30092021"
1-220,SI20SCA3-25,"DETAIL DESIGN / CLARIFICATION AIR COMPRESSOR SYSTEM 20SCA",5121,"HK1003-Rev.0E-3",TT_Task,"55902",-,-,-,14,TK_Active,21/09/2021,21/09/2021,24/11/2021,,"SI20SCA2-85 FS","SI20SCA2-85","SI20SCA3-26 FS","SI20SCA3-26",59,59,68,,13,13,16,,30,288,"HK1003 -Blackpoint D2 - Rev.0E DD30092021"
1-221,SI20SCA2-86,"DESIGN DATA SHEETS AIR COMPRESSOR SYSTEM SCA",5121,"HK1003-Rev.0E-3",TT_Task,"55902",-,-,-,100,TK_Complete,05/02/2021,05/02/2021,18/02/2021,18/02/2021,"SI20USC2-12 FS,SI-----1-05 FS","SI20USC2-12,SI-----1-05","SI20SCA2-75 FS","SI20SCA2-75",26,26,28,28,6,6,6,6,4,,"HK1003 -Blackpoint D2 - Rev.0E DD30092021"
1-222,SI--GM-2B66,"(DF) INPUT FOR M2 SUMP PUMP GM",5121,"HK1003-Rev.0E-3",TT_FinMile,"55902",-,-,-,100,TK_Complete,06/08/2021,06/08/2021,06/08/2021,06/08/2021,"SI--GM-2B85 FS","SI--GM-2B85","SI---5P2A10 FS","SI---5P2A10",52,52,52,52,12,12,12,12,25,,"HK1003 -Blackpoint D2 - Rev.0E DD30092021"
1-223,SI--GM-2B87,"PROPOSAL PUMP CURVE FOR DESIGN C-V SUMP PUMP GM",5121,"HK1003-Rev.0E-3",TT_Mile,"55902",-,-,-,0,TK_NotStart,02/10/2021,,02/10/2021,,"SI--GM-2B75 SS,SI--GM-2B85 FS","SI--GM-2B75,SI--GM-2B85","SI--G--2I35 FS","SI--G--2I35",61,,61,,14,,14,,31,1144,"HK1003 -Blackpoint D2 - Rev.0E DD30092021"
1-224,SI--GM-2B86,"DESIGN DATA SHEETS SUMP PUMP GM",5121,"HK1003-Rev.0E-3",TT_Task,"55902",-,-,-,100,TK_Complete,30/01/2021,30/01/2021,03/05/2021,03/05/2021,"SI--G--2-20 FS,SI--UBH2-61 FS,SI-----1-05 FS,SI--G--2-35 FS","SI--G--2-20,SI--UBH2-61,SI-----1-05,SI--G--2-35","SI--GM-2B75 FS","SI--GM-2B75",26,26,39,39,6,6,9,9,3,,"HK1003 -Blackpoint D2 - Rev.0E DD30092021"
1-225,SI20LCL2B05,"ERECTION MANUALS ON SITE BOILER BLOWDOWN PUMP LCL",5121,"HK1003-Rev.0E-3",TT_Mile,"55902",-,-,-,0,TK_NotStart,25/06/2022,,25/06/2022,,"SI20LCL3B80 FS","SI20LCL3B80","SI20LCL6B15 FS","SI20LCL6B15",99,,99,,23,,23,,71,336,"HK1003 -Blackpoint D2 - Rev.0E DD30092021"
1-226,SI20LCL2B66,"(DF) INPUT FOR M2 BOILER BLOWDOWN PUMP LCL",5121,"HK1003-Rev.0E-3",TT_FinMile,"55902",-,-,-,100,TK_Complete,21/05/2021,21/05/2021,21/05/2021,21/05/2021,"SI20LCL3B25 FS,SI20LCL2B85 FS","SI20LCL3B25,SI20LCL2B85","SI---2P2A10 FS,SI---2P2A10 FF","SI---2P2A10,SI---2P2A10",41,41,41,41,9,9,9,9,13,,"HK1003 -Blackpoint D2 - Rev.0E DD30092021"
1-227,SI20LCL2B87,"PROPOSAL PUMP CURVE FOR DESIGN C-V BOILER BLOWDOWN PUMP LCL",5121,"HK1003-Rev.0E-3",TT_Mile,"55902",-,-,-,100,TK_Complete,29/04/2021,29/04/2021,29/04/2021,29/04/2021,"SI20LCL2B75 FS","SI20LCL2B75","SI--L--2I45 FS,SI--L--2I46 FS","SI--L--2I45,SI--L--2I46",38,38,38,38,9,9,9,9,10,,"HK1003 -Blackpoint D2 - Rev.0E DD30092021"
1-228,SI20PCB2B05,"ERECTION MANUALS TO SKIDDER COOLING WATER BOOSTER PUMP PCB",5121,"HK1003-Rev.0E-3",TT_Mile,"55902",-,-,-,0,TK_NotStart,06/10/2021,,06/10/2021,,"SI20PCB3B31 SS","SI20PCB3B31","SI20PGB6M16 FS,SI20---3B45 FS,SI20PCB3B80 FS","SI20PGB6M16,SI20---3B45,SI20PCB3B80",61,,61,,14,,14,,31,208,"HK1003 -Blackpoint D2 - Rev.0E DD30092021"
1-229,SI20BFA3-70,"TIMES OF COMPLETION (FINAL DATA IN KANLOG) LV- / DC-SWITCHGEAR BFA/BFB/BMA/BUA/BUB/BUC",5121,"HK1003-Rev.0E-3",TT_FinMile,"55902",-,-,-,0,TK_NotStart,16/01/2022,,16/01/2022,,"SI20BFA3-25 FS","SI20BFA3-25","SI20BFA4-10 FS","SI20BFA4-10",76,,76,,17,,17,,46,688,"HK1003 -Blackpoint D2 - Rev.0E DD30092021"
1-230,SI20PCB2B67,"(DF) INPUT FOR MS3 SERVICE COOLING WATER BOOSTER PUMP PCB",5121,"HK1003-Rev.0E-3",TT_FinMile,"55902",-,-,-,100,TK_Complete,30/04/2021,30/04/2021,30/04/2021,30/04/2021,"SI--PCB2B85 FS","SI--PCB2B85","SI-----2H60 FS","SI-----2H60",38,38,38,38,9,9,9,9,10,,"HK1003 -Blackpoint D2 - Rev.0E DD30092021"
1-231,SI20PCB2B66,"(DF) INPUT FOR M2 SERVICE COOLING WATER BOOSTER PUMP PCB",5121,"HK1003-Rev.0E-3",TT_FinMile,"55902",-,-,-,100,TK_Complete,30/04/2021,30/04/2021,30/04/2021,30/04/2021,"SI--PCB2B85 FS","SI--PCB2B85","SI---3P2A10 FS","SI---3P2A10",38,38,38,38,9,9,9,9,10,,"HK1003 -Blackpoint D2 - Rev.0E DD30092021"
1-232,SI20PCB2B65,"PROPOSAL PUMP CURVE FOR DESIGN C-V SERVICE COOLING WATER BOOSTER PUMP PCB",5121,"HK1003-Rev.0E-3",TT_Mile,"55902",-,-,-,100,TK_Complete,23/04/2021,23/04/2021,23/04/2021,23/04/2021,"SI--PCB2B75 FS,SI20PCB2B64 FS","SI--PCB2B75,SI20PCB2B64","SI--L--2I45 FS,SI--P--2I45 FS","SI--L--2I45,SI--P--2I45",37,37,37,37,8,8,8,8,9,,"HK1003 -Blackpoint D2 - Rev.0E DD30092021"
1-233,SI20PCB2B64,"DESIGN DATA SHEETS SERVICE COOLING WATER BOOSTER PUMP PCB",5121,"HK1003-Rev.0E-3",TT_Task,"55902",-,-,-,100,TK_Complete,07/01/2021,07/01/2021,14/01/2021,14/01/2021,"SI--P--2-05 SS,SI--HA-2A86 FS,SI--G--2-20 FS","SI--P--2-05,SI--HA-2A86,SI--G--2-20","SI20PCB2B65 FS,SI--PCB2B75 SS","SI20PCB2B65,SI--PCB2B75",22,22,23,23,5,5,5,5,1,,"HK1003 -Blackpoint D2 - Rev.0E DD30092021"
1-234,SI--LD-2A63,"(DF) INPUT FOR MS3 CONDENSATE POLISHING PLANT 20LD",5121,"HK1003-Rev.0E-3",TT_FinMile,"55902",-,-,-,100,TK_Complete,01/06/2021,01/06/2021,01/06/2021,01/06/2021,"SI--LDK2B85 FS","SI--LDK2B85","SI20UMC2B20 FF","SI20UMC2B20",43,43,43,43,10,10,10,10,15,,"HK1003 -Blackpoint D2 - Rev.0E DD30092021"
1-235,SI--LD-2-65,"(DF) INPUT FOR M2 CONDENSATE POLISHING PLANT 20LD",5121,"HK1003-Rev.0E-3",TT_FinMile,"55902",-,-,-,100,TK_Complete,06/07/2021,06/07/2021,06/07/2021,06/07/2021,"SI--LDK2B85 FS","SI--LDK2B85","SI---2P2A10 FS","SI---2P2A10",48,48,48,48,11,11,11,11,20,,"HK1003 -Blackpoint D2 - Rev.0E DD30092021"
1-236,SI20QU-2-06,"ERECTION MANUALS ON SITE SAMPLING CONTAINER 20QU",5121,"HK1003-Rev.0E-3",TT_Mile,"55902",-,-,-,0,TK_NotStart,21/10/2022,,21/10/2022,,"SI20QU-3-80 FS","SI20QU-3-80","SI20QU-6-40 FS,SI20QU-6-15 FS","SI20QU-6-40,SI20QU-6-15",115,,115,,27,,27,,83,912,"HK1003 -Blackpoint D2 - Rev.0E DD30092021"
1-237,SI20QU-3-25,"DETAIL DESIGN SAMPLING CONTAINER 20QU",5121,"HK1003-Rev.0E-3",TT_Task,"55902",-,-,-,100,TK_Complete,25/07/2021,25/07/2021,11/09/2021,11/09/2021,"SI20QU-2-85 FS,SI--HA-2-85 FS","SI20QU-2-85,SI--HA-2-85","SI20QU-3-26 FS","SI20QU-3-26",51,51,58,58,11,11,13,13,23,,"HK1003 -Blackpoint D2 - Rev.0E DD30092021"
1-238,SI20LCL3B25,"DETAIL DESIGN / CLARIFICATION BOILER BLOWDOWN PUMP 20LCL",5121,"HK1003-Rev.0E-3",TT_Task,"55902",-,-,-,100,TK_Complete,03/05/2021,03/05/2021,30/05/2021,30/05/2021,"SI20LCL2B85 FS,SI--HA-2-85 FS","SI20LCL2B85,SI--HA-2-85","SI20LCL2B66 FS,SI20LCL3B26 FS","SI20LCL2B66,SI20LCL3B26",39,39,43,43,9,9,10,10,11,,"HK1003 -Blackpoint D2 - Rev.0E DD30092021"
1-239,SI20LCL2B86,"DESIGN DATA SHEETS BOILER BLOWDOWN PUMP LCL",5121,"HK1003-Rev.0E-3",TT_Task,"55902",-,-,-,100,TK_Complete,02/02/2021,02/02/2021,15/02/2021,15/02/2021,"SI--HA-2A86 FS,SI--G--2-20 FS","SI--HA-2A86,SI--G--2-20","SI20LCL2B75 FF","SI20LCL2B75",26,26,28,28,6,6,6,6,4,,"HK1003 -Blackpoint D2 - Rev.0E DD30092021"
1-240,SI--PAC2B05,"ERECTION MANUALS ON SITE CIRC. CW PUMP PAC",5121,"HK1003-Rev.0E-3",TT_Mile,"55902",-,-,-,0,TK_NotStart,12/06/2022,,12/06/2022,,"SI20PAC3B80 FS","SI20PAC3B80","SI20PAC6B15 FS","SI20PAC6B15",97,,97,,22,,22,,69,384,"HK1003 -Blackpoint D2 - Rev.0E DD30092021"
1-241,SI--PAC2B86,"DESIGN DATA SHEETS CIRC. CW PUMP PAC",5121,"HK1003-Rev.0E-3",TT_Task,"55902",-,-,-,100,TK_Complete,16/01/2021,16/01/2021,29/01/2021,29/01/2021,"SI--P--2-05 SS,SI--G--2-20 FS,SI-----1-05 FS","SI--P--2-05,SI--G--2-20,SI-----1-05","SI--PAC2B75 FF,SI--PAC2B45 FS","SI--PAC2B75,SI--PAC2B45",24,24,25,25,5,5,6,6,2,,"HK1003 -Blackpoint D2 - Rev.0E DD30092021"
1-242,SI20LCB2B05,"ERECTION MANUALS ON SITE CONDENSATE EXTRACTION PUMP LCB",5121,"HK1003-Rev.0E-3",TT_Mile,"55902",-,-,-,0,TK_NotStart,05/05/2022,,05/05/2022,,"SI20LCB3B28 FS","SI20LCB3B28","SI20LCB6B15 FS,SI20LCB3B70 FS","SI20LCB6B15,SI20LCB3B70",91,,91,,21,,21,,62,344,"HK1003 -Blackpoint D2 - Rev.0E DD30092021"
1-243,SI20LCB2B92,"DESIGN DATA SHEETS CONDENSATE EXTRACTION PUMPS LCB",5121,"HK1003-Rev.0E-3",TT_Task,"55902",-,-,-,100,TK_Complete,01/01/2021,01/01/2021,14/01/2021,14/01/2021,"SI--L--2-05 SS,SI--HA-2A86 FS,SI-----1-03 FS","SI--L--2-05,SI--HA-2A86,SI-----1-03","SI--LCB2B75 FF","SI--LCB2B75",21,21,23,23,5,5,5,5,1,,"HK1003 -Blackpoint D2 - Rev.0E DD30092021"
1-244,SI--HA-2A86,"(DF) HEAT FLOW DIAGRAM",5121,"HK1003-Rev.0E-3",TT_Mile,"55902",-,-,-,100,TK_Complete,05/12/2020,05/12/2020,05/12/2020,05/12/2020,"SI--HA-2-75 SS,SI--HA-2-82 FS","SI--HA-2-75,SI--HA-2-82","SI--HA-2-92 FS,SI20PGB2C86 FS,SI20LBG2C86 FS,SI20LBG2C75 FS,SI20PGB2B86 FS,SI20PCB2B64 FS,SI20LDK2B86 FS,SI20LCL2B86 FS,SI20LCL2B75 FS,SI20LCA2B87 FS,SI--LCA2B75 FS,SI20LAC2B86 FS,SI20LCB2B92 FS,SI--HA-2-85 FS,SI--HA-2-05 FS,SI----P2J85 FS","SI--HA-2-92,SI20PGB2C86,SI20LBG2C86,SI20LBG2C75,SI20PGB2B86,SI20PCB2B64,SI20LDK2B86,SI20LCL2B86,SI20LCL2B75,SI20LCA2B87,SI--LCA2B75,SI20LAC2B86,SI20LCB2B92,SI--HA-2-85,SI--HA-2-05,SI----P2J85",18,18,18,18,4,4,4,4,1,,"HK1003 -Blackpoint D2 - Rev.0E DD30092021"
1-245,SI20UBA2J81,"E-AND I&C- MANUALS FOR COMP.INSTALL.AVAILABLE ELECTRICAL MODULES 20UBA7610/20",5121,"HK1003-Rev.0E-3",TT_Mile,"55902",-,-,-,0,TK_NotStart,27/12/2021,,27/12/2021,,"SI--UBA2G85 FS","SI--UBA2G85","SI20UBA3J55 FS","SI20UBA3J55",73,,73,,17,,17,,43,768,"HK1003 -Blackpoint D2 - Rev.0E DD30092021"
1-246,SI--UBA2K05,"ERECTION MANUALS ON SITE  ELECTRICAL MODULES UBA",5121,"HK1003-Rev.0E-3",TT_Mile,"55902",-,-,-,0,TK_NotStart,09/07/2022,,09/07/2022,,"SP20UBA3H80 FS","SP20UBA3H80","SI20UBA7-104 FS,SI20UBA7-25 FS,SI20UBA7L15 FS,SI20UBA7C-31 FS,SI20UBA7-26 FS,SI20UBA7-27 FS,SI20UBA7C-10 FS","SI20UBA7-104,SI20UBA7-25,SI20UBA7L15,SI20UBA7C-31,SI20UBA7-26,SI20UBA7-27,SI20UBA7C-10",101,,101,,23,,23,,73,736,"HK1003 -Blackpoint D2 - Rev.0E DD30092021"
1-247,SI--UBA3K50,"ELECTRICAL MODULES READY FOR INSTALLATION OF COMP. ELECTRICAL MODULES UBA",5121,"HK1003-Rev.0E-3",TT_FinMile,"55902",-,-,-,0,TK_NotStart,16/02/2022,,16/02/2022,,"SP20UBA3H25 FS","SP20UBA3H25","SP20UBA3H55 FS","SP20UBA3H55",80,,80,,18,,18,,50,592,"HK1003 -Blackpoint D2 - Rev.0E DD30092021"
1-248,SI--CYA2-05,"ERECTION MANUALS ON SITE  TELECOMMUNICATION CYA",5121,"HK1003-Rev.0E-3",TT_Mile,"55902",-,-,-,0,TK_NotStart,30/12/2022,,30/12/2022,,"SI--CYA3-80 FS","SI--CYA3-80","SI--CYA7A15 FS","SI--CYA7A15",125,,125,,29,,29,,88,400,"HK1003 -Blackpoint D2 - Rev.0E DD30092021"
1-249,SI--BZL2-05,"ERECTION MANUALS ON SITE  LIGHTING & SMALL POWER BZL",5121,"HK1003-Rev.0E-3",TT_Mile,"55902",-,-,-,0,TK_NotStart,29/06/2022,,29/06/2022,,"SI--BZL3-80 FS","SI--BZL3-80","SI20BZL7G15 FS,SI20BZL7A15 FS,SI20BZL7E16 FS,SI20BZL7E18 FS,SI20BZL7E17 FS,SI20BZL7F17 FS,SI20BZL7E15 FS,SI20BZL7-38 FS,SI20BZL7C15 FS,SI20LAC6B18 FS,SI20BZL7F15 FS","SI20BZL7G15,SI20BZL7A15,SI20BZL7E16,SI20BZL7E18,SI20BZL7E17,SI20BZL7F17,SI20BZL7E15,SI20BZL7-38,SI20BZL7C15,SI20LAC6B18,SI20BZL7F15",99,,99,,23,,23,,71,240,"HK1003 -Blackpoint D2 - Rev.0E DD30092021"
1-250,SI--BZP2-05,"ERECTION MANUALS ON SITE  CABLE SUPPORT SYSTEM BZP",5121,"HK1003-Rev.0E-3",TT_Mile,"55902",-,-,-,0,TK_NotStart,23/03/2022,,23/03/2022,,"SI--BZP3-80 FS","SI--BZP3-80","SI20BZP7-60 FS,SI20BZP7-145 FS,SI20BZP7-15 FS,SI20BZP7-85 FS,SI20BZP7-125 FS,SI20BZK7-130 FS,SI20BZP7-80 FS,SI20BZP7-135 FS,SI20BZP7-95 FS,SI20BZP7-50 FS,SI20BZP7-160 FS,SI20BZP7-100 FS,SI20BZP7-20 FS,SI20BZP7-110 FS,SI20BZP7-115 FS,SI20BZP7-140 FS,SI20BZP7-160 SS,SI20BZP7-50 SS,SI20BZP7-80 SS,SI20BZP7-75 FS,SI20BZP7-171 FS,SI20BZP7-172 FS,SI20BZP7-173 FS,SI--BZP4B40 FS,SI20BZK7-187 FS,SI20MAA7A15 FS,SI20MAG7A15 FS,SI20MAJ7A15 FS,SI20MAL7A15 FS,SI20MAN7H15 FS,SI20MAV7H15 FS,SI20MAW7H15 FS,SI20MAX7H15 FS,SI20MB-7H15 FS,SI20MB-7J15 FS,SI20MBQ7H15 FS,SI20LBA7H15 FS,SI20LBA7H16 FS,SI20LBA7J15 FS,SI20LBA7J16 FS,SI20LBB7J15 FS,SI20LBB7J17 FS,SI20LBG7A17 FS,SI20LBG7A15 FS,SI20LAB7H15 FS,SI20LCA7A15 FS,SI20LCL7A15 FS,SI20LCW7H15 FS,SI20LDK7H16 FS,SI20EK-7H15 FS,SI20EK-7I15 FS,SI20PAB7A15 FS,SI20PAH7H15 FS,SI20PAR7A16 FS,SI20PCB7H15 FS,SI20PGB7H15 FS,SI20GHC7H15 FS,SI20GHC7H17 FS,SI20GHD7H15 FS,SI20QFB7H15 FS,SI20QU-7H15 FS,SI20BZK7E26 FS","SI20BZP7-60,SI20BZP7-145,SI20BZP7-15,SI20BZP7-85,SI20BZP7-125,SI20BZK7-130,SI20BZP7-80,SI20BZP7-135,SI20BZP7-95,SI20BZP7-50,SI20BZP7-160,SI20BZP7-100,SI20BZP7-20,SI20BZP7-110,SI20BZP7-115,SI20BZP7-140,SI20BZP7-160,SI20BZP7-50,SI20BZP7-80,SI20BZP7-75,SI20BZP7-171,SI20BZP7-172,SI20BZP7-173,SI--BZP4B40,SI20BZK7-187,SI20MAA7A15,SI20MAG7A15,SI20MAJ7A15,SI20MAL7A15,SI20MAN7H15,SI20MAV7H15,SI20MAW7H15,SI20MAX7H15,SI20MB-7H15,SI20MB-7J15,SI20MBQ7H15,SI20LBA7H15,SI20LBA7H16,SI20LBA7J15,SI20LBA7J16,SI20LBB7J15,SI20LBB7J17,SI20LBG7A17,SI20LBG7A15,SI20LAB7H15,SI20LCA7A15,SI20LCL7A15,SI20LCW7H15,SI20LDK7H16,SI20EK-7H15,SI20EK-7I15,SI20PAB7A15,SI20PAH7H15,SI20PAR7A16,SI20PCB7H15,SI20PGB7H15,SI20GHC7H15,SI20GHC7H17,SI20GHD7H15,SI20QFB7H15,SI20QU-7H15,SI20BZK7E26",85,,85,,19,,19,,53,144,"HK1003 -Blackpoint D2 - Rev.0E DD30092021"
1-251,SI--BZP2-92,"FIRST BOQ CABLE SUPPORT SYSTEM BZP",5121,"HK1003-Rev.0E-3",TT_FinMile,"55902",-,-,-,0,TK_NotStart,30/11/2021,,30/11/2021,,"SI--BZP2-91 FS,SI--BZP2-101 FS","SI--BZP2-91,SI--BZP2-101","SI--BAW2-74 FS","SI--BAW2-74",69,,69,,16,,16,,40,1560,"HK1003 -Blackpoint D2 - Rev.0E DD30092021"
1-252,SI--BZP2-91,"ADJUSTMENT OF CABLE SUPPORT ACC. TO MANUFACTURER STANDARD",5121,"HK1003-Rev.0E-3",TT_Task,"55902",-,-,-,0,TK_NotStart,06/10/2021,,30/11/2021,,"SI--BZP2-85 FS","SI--BZP2-85","SI--BZP2-92 FS,SI--BZP3-25 FS","SI--BZP2-92,SI--BZP3-25",61,,69,,14,,16,,31,144,"HK1003 -Blackpoint D2 - Rev.0E DD30092021"
1-253,SI--BZK2-06,"ERECTION MANUALS ON SITE I&C CABLES BZK",5121,"HK1003-Rev.0E-3",TT_Mile,"55902",-,-,-,0,TK_NotStart,23/06/2022,,23/06/2022,,"SI20BZK3-81 FS,SI20BZK4-44 SS","SI20BZK3-81,SI20BZK4-44","SI20BZK7-25 FS","SI20BZK7-25",98,,98,,23,,23,,70,688,"HK1003 -Blackpoint D2 - Rev.0E DD30092021"
1-254,SI--BZK2-05,"ERECTION MANUALS ON SITE  MV/LV CABLES",5121,"HK1003-Rev.0E-3",TT_Mile,"55902",-,-,-,0,TK_NotStart,20/07/2022,,20/07/2022,,"SI20BZK3-80 FS","SI20BZK3-80","SI20BZK7-25 FS","SI20BZK7-25",102,,102,,23,,23,,74,472,"HK1003 -Blackpoint D2 - Rev.0E DD30092021"
1-255,SI--B--2-65,"TENDER BOQ MV/LV CABLES BZK",5121,"HK1003-Rev.0E-3",TT_Mile,"55902",-,-,-,100,TK_Complete,24/08/2021,24/08/2021,24/08/2021,24/08/2021,"SI--B--2-44 FS,SI--BZK2-15 FS","SI--B--2-44,SI--BZK2-15","SI--BZK2-87 FS","SI--BZK2-87",55,55,55,55,12,12,12,12,27,,"HK1003 -Blackpoint D2 - Rev.0E DD30092021"
1-256,SI--BFT2-05,"ERECTION MANUALS ON SITE  LV-TRANSFORMERS BFT",5121,"HK1003-Rev.0E-3",TT_Mile,"55902",-,-,-,0,TK_NotStart,28/06/2022,,28/06/2022,,"SI20BFT3-80 FS","SI20BFT3-80","SI20BFT7-15 FS,SI20BFT7-16 FS","SI20BFT7-15,SI20BFT7-16",99,,99,,23,,23,,71,816,"HK1003 -Blackpoint D2 - Rev.0E DD30092021"
1-257,SI20BAT2-05,"ERECTION MANUALS ON SITE MAIN TRANSFORMER BAT",5121,"HK1003-Rev.0E-3",TT_Mile,"55902",-,-,-,0,TK_NotStart,16/07/2022,,16/07/2022,,"SI20BAT3-80 FS","SI20BAT3-80","SI20BAT4-10 FS","SI20BAT4-10",102,,102,,23,,23,,73,152,"HK1003 -Blackpoint D2 - Rev.0E DD30092021"
1-258,SI20XKA2-05,"ERECTION MANUALS ON SITE  EMERGENCY DIESEL GEN.SET XKA",5121,"HK1003-Rev.0E-3",TT_Mile,"55902",-,-,-,0,TK_NotStart,15/05/2022,,15/05/2022,,"SI20XKA4-10 SS","SI20XKA4-10","SI20XKA7-15 FS","SI20XKA7-15",93,,93,,21,,21,,65,1055,"HK1003 -Blackpoint D2 - Rev.0E DD30092021"
1-259,SI20BTL3-25,"DETAIL DESIGN / MANUFACTURING / SHOP TEST BATTERY CHARGER BTL",5121,"HK1003-Rev.0E-3",TT_Task,"55902",-,-,-,0,TK_NotStart,12/10/2021,,16/01/2022,,"SI20BUK2-85 FS,SI--B--2A55 FS","SI20BUK2-85,SI--B--2A55","SI20BTL4-10 FS","SI20BTL4-10",62,,76,,14,,17,,33,688,"HK1003 -Blackpoint D2 - Rev.0E DD30092021"
1-260,SI20BTL4-10,"TRANSPORT TO WORKSHOP BATTERY CHARGER BTL (TO ST. INGBERT-INSTALL INTO ELECTRICAL MODULES)",5121,"HK1003-Rev.0E-3",TT_Task,"55902",-,-,-,0,TK_NotStart,17/01/2022,,18/01/2022,,"SI20BTL3-25 FS","SI20BTL3-25","SI20UBA4-65 FS","SI20UBA4-65",76,,76,,17,,17,,46,688,"HK1003 -Blackpoint D2 - Rev.0E DD30092021"
1-261,SI20BRU3-25,"DETAIL DESIGN / MANUFACTURING / SHOP TEST INVERTER BRU",5121,"HK1003-Rev.0E-3",TT_Task,"55902",-,-,-,0,TK_NotStart,12/10/2021,,16/01/2022,,"SI20BUK2-85 FS,SI--B--2A55 FS","SI20BUK2-85,SI--B--2A55","SI20BRU4-10 FS","SI20BRU4-10",62,,76,,14,,17,,33,688,"HK1003 -Blackpoint D2 - Rev.0E DD30092021"
1-262,SI20BRU4-10,"TRANSPORT TO WORKSHOP INVERTER BRU (TO ST. INGBERT-INSTALL INTO ELECTRICAL MODULES)",5121,"HK1003-Rev.0E-3",TT_Task,"55902",-,-,-,0,TK_NotStart,17/01/2022,,18/01/2022,,"SI20BRU3-25 FS","SI20BRU3-25","SI20UBA4-65 FS","SI20UBA4-65",76,,76,,17,,17,,46,688,"HK1003 -Blackpoint D2 - Rev.0E DD30092021"
1-263,SI--BFF2-88,"(DF) MANUFACTURING LV/DV-SWITCHGEAR FOR HRSG 20BFF/BMF",5121,"HK1003-Rev.0E-3",TT_Mile,"55902",-,-,-,100,TK_Complete,08/09/2021,08/09/2021,08/09/2021,08/09/2021,"SI--B--2A56 SS,SI--BFF3-25 FS","SI--B--2A56,SI--BFF3-25","SI20BFF3-25 FS","SI20BFF3-25",57,57,57,57,13,13,13,13,29,,"HK1003 -Blackpoint D2 - Rev.0E DD30092021"
1-264,SI--5552-10,"BOQ - REVIEW MAIN CIVIL WORKS",5121,"HK1003-Rev.0E-3",TT_Mile,"55902",-,-,-,100,TK_Complete,13/12/2020,13/12/2020,13/12/2020,13/12/2020,"SI-----1-01 FS","SI-----1-01","SI--5552-11 FS,SI--5552-81 FS","SI--5552-11,SI--5552-81",19,19,19,19,4,4,4,4,1,,"HK1003 -Blackpoint D2 - Rev.0E DD30092021"
1-265,SI20BTA4B10,"TRANSPORT TO WORKSHOP BATTERY RACKS BTA (TO ST. INGBERT-INSTALL INTO ELECTRICAL MODULES)",5121,"HK1003-Rev.0E-3",TT_Task,"55902",-,-,-,0,TK_NotStart,13/01/2022,,14/01/2022,,"SI20BTA3-25 FS,SI20BTA3-25 FF","SI20BTA3-25,SI20BTA3-25","SI20UBA4-65 FS","SI20UBA4-65",75,,75,,17,,17,,45,720,"HK1003 -Blackpoint D2 - Rev.0E DD30092021"
1-266,SI20BFC2Z77,"(DF) MANUFACTURING LV/DV-SWITCHGEAR 20BFC/BFD",5121,"HK1003-Rev.0E-3",TT_Mile,"55902",-,-,-,100,TK_Complete,08/09/2021,08/09/2021,08/09/2021,08/09/2021,"SI--B--2A56 FS,SI20BFC3-24 FS","SI--B--2A56,SI20BFC3-24","SI20BFC3-25 FS","SI20BFC3-25",57,57,57,57,13,13,13,13,29,,"HK1003 -Blackpoint D2 - Rev.0E DD30092021"
1-267,SI20BFC3-24,"DETAIL DESIGN / CLARIFICATION TYPICAL OF LV- / DC-SWITCHGEAR 20BFC/BFD",5121,"HK1003-Rev.0E-3",TT_Task,"55902",-,-,-,66,TK_Active,30/07/2021,30/07/2021,31/10/2021,,"SI20BFC2Z85 FS","SI20BFC2Z85","SI20BFC2Z77 FS,SI20BFC3-25 FS","SI20BFC2Z77,SI20BFC3-25",51,51,65,,12,12,15,,23,936,"HK1003 -Blackpoint D2 - Rev.0E DD30092021"
1-268,SI20BFC2Z85,"CONTRACT INTO FORCE LV- / DC-SWITCHGEAR 20BFC/BFD",5121,"HK1003-Rev.0E-3",TT_Mile,"55902",-,-,-,100,TK_Complete,30/07/2021,30/07/2021,30/07/2021,30/07/2021,"SI20BFA2-85 FS,SI--BFF2-85 FS,SI--UBA2G85 FS,SI20BFC2-80 FS","SI20BFA2-85,SI--BFF2-85,SI--UBA2G85,SI20BFC2-80","SI20BFC3-24 FS","SI20BFC3-24",51,51,51,51,12,12,12,12,23,,"HK1003 -Blackpoint D2 - Rev.0E DD30092021"
1-269,SI--BFF3-25,"DETAIL DESIGN / CLARIFICATION TYPICAL OF LV SWITCHGEAR FOR HRSG 20BFF/BMF",5121,"HK1003-Rev.0E-3",TT_Task,"55902",-,-,-,100,TK_Complete,30/07/2021,30/07/2021,07/09/2021,07/09/2021,"SI--BFF2-85 FS,SI--HA-2-85 FS","SI--BFF2-85,SI--HA-2-85","SI--BFF2-88 FS","SI--BFF2-88",51,51,57,57,12,12,13,13,23,,"HK1003 -Blackpoint D2 - Rev.0E DD30092021"
1-270,SI20BFA2-86,"(DF) MANUFACTURING LV- / DC-SWITCHGEAR BFA/BFB/BMA/BUA/BUB/BUC",5121,"HK1003-Rev.0E-3",TT_Mile,"55902",-,-,-,100,TK_Complete,08/09/2021,08/09/2021,08/09/2021,08/09/2021,"SI--B--2A56 SS,SI20BFA2-25 FS","SI--B--2A56,SI20BFA2-25","SI20BFA3-25 FS","SI20BFA3-25",57,57,57,57,13,13,13,13,29,,"HK1003 -Blackpoint D2 - Rev.0E DD30092021"
1-271,SI20BFA2-25,"DETAIL DESIGN / CLARIFICATION TYPICAL OF LV- / DC-SWITCHGEAR BFA/BFB/BMA/BUA/BUB/BUC",5121,"HK1003-Rev.0E-3",TT_Task,"55902",-,-,-,100,TK_Complete,30/07/2021,30/07/2021,07/09/2021,07/09/2021,"SI20BFA2-85 FS","SI20BFA2-85","SI20BFA2-86 FS,SI--B--2A55 SS,SI20BFA3-25 FS","SI20BFA2-86,SI--B--2A55,SI20BFA3-25",51,51,57,57,12,12,13,13,23,,"HK1003 -Blackpoint D2 - Rev.0E DD30092021"
1-272,SI--BAW2-05,"ERECTION MANUALS ON SITE IN- / OUTDOOR GROUNDING BAW",5121,"HK1003-Rev.0E-3",TT_Mile,"55902",-,-,-,0,TK_NotStart,09/03/2022,,09/03/2022,,"SI--BAW4-10 SS","SI--BAW4-10","SI20BAW5A18 FS,SI20BAW5C23 FS,SI20BAW5C17 FS,SI20BAW5C15 FS,SI20BAW5A16 FS,SI20BAW5B15 FS","SI20BAW5A18,SI20BAW5C23,SI20BAW5C17,SI20BAW5C15,SI20BAW5A16,SI20BAW5B15",83,,83,,19,,19,,52,2344,"HK1003 -Blackpoint D2 - Rev.0E DD30092021"
1-273,SI--BAC2-05,"ERECTION MANUALS ON SITE  GEN. CIRCUIT BREAKER BAC",5121,"HK1003-Rev.0E-3",TT_Mile,"55902",-,-,-,0,TK_NotStart,01/08/2022,,01/08/2022,,"SI20BAC3B80 FS","SI20BAC3B80","SI20BAC7-15 FS","SI20BAC7-15",104,,104,,24,,24,,76,576,"HK1003 -Blackpoint D2 - Rev.0E DD30092021"
1-274,SI--BAA2-05,"ERECTION MANUALS ON SITE  IPB BAA",5121,"HK1003-Rev.0E-3",TT_Mile,"55902",-,-,-,0,TK_NotStart,19/07/2022,,19/07/2022,,"SI20BAA3B80 FS","SI20BAA3B80","SI20BAA7-15 FS","SI20BAA7-15",102,,102,,23,,23,,74,688,"HK1003 -Blackpoint D2 - Rev.0E DD30092021"
1-275,SI--3332-24,"INTERCONNECTION ENGINEERING, CMI, FUP",5121,"HK1003-Rev.0E-3",TT_Task,"55902",-,-,-,100,TK_Complete,30/04/2021,30/04/2021,12/07/2021,12/07/2021,"SI--C--2C55 FF,SI--3332-26 FS","SI--C--2C55,SI--3332-26","SP--B--2-60 FS,SP--B--2-59 FS","SP--B--2-60,SP--B--2-59",38,38,49,49,9,9,11,11,10,,"HK1003 -Blackpoint D2 - Rev.0E DD30092021"
1-276,SI--B--2-67,"BINDING ELECTRICAL AND I&C CABLE LIST AVAILABLE",5121,"HK1003-Rev.0E-3",TT_Mile,"55902",-,-,-,0,TK_NotStart,20/12/2021,,20/12/2021,,"SI--B--2-30 FS","SI--B--2-30","SI--B--2-68 SS","SI--B--2-68",72,,72,,16,,16,,43,696,"HK1003 -Blackpoint D2 - Rev.0E DD30092021"
1-277,SI--B--2A56,"LV- SWITCHGEAR DATA FINAL",5121,"HK1003-Rev.0E-3",TT_Mile,"55902",-,-,-,100,TK_Complete,31/07/2021,31/07/2021,31/07/2021,31/07/2021,"SI--BAW2-06 FS","SI--BAW2-06","SI--C--2E84 FS,SI20BFC2Z77 FS,SI--BFF2-88 SS,SI20BFA2-86 SS,SI20BFF3-25 FS,SI--C--2C55 FS","SI--C--2E84,SI20BFC2Z77,SI--BFF2-88,SI20BFA2-86,SI20BFF3-25,SI--C--2C55",52,52,52,52,12,12,12,12,24,,"HK1003 -Blackpoint D2 - Rev.0E DD30092021"
1-278,SI--BAW2-06,"PREPARATION VEL (after ELV3)",5121,"HK1003-Rev.0E-3",TT_Task,"55902",-,-,-,100,TK_Complete,01/07/2021,01/07/2021,30/07/2021,30/07/2021,"SI--B--2A55 SS","SI--B--2A55","SI--B--2A56 FS","SI--B--2A56",47,47,51,51,11,11,12,12,19,,"HK1003 -Blackpoint D2 - Rev.0E DD30092021"
1-279,SI--BAW2-04,"PREPARATION VEL (before ELV3)",5121,"HK1003-Rev.0E-3",TT_Task,"55902",-,-,-,100,TK_Complete,16/03/2021,16/03/2021,14/06/2021,14/06/2021,"SI--B--2A50 FS","SI--B--2A50","SI--B--2A55 FS","SI--B--2A55",32,32,45,45,7,7,10,10,6,,"HK1003 -Blackpoint D2 - Rev.0E DD30092021"
1-280,SI--BAW2-03,"PREPARATION VEL (before ELV2)",5121,"HK1003-Rev.0E-3",TT_Task,"55902",-,-,-,100,TK_Complete,05/02/2021,05/02/2021,15/03/2021,15/03/2021,"SI--B--2-03 FS","SI--B--2-03","SI--B--2-44 SS,SI--B--2A50 FS","SI--B--2-44,SI--B--2A50",26,26,32,32,6,6,7,7,4,,"HK1003 -Blackpoint D2 - Rev.0E DD30092021"
1-281,SI--3332-26,"APPROVED SINGLE LINE DIAGRAM RELEASED",5121,"HK1003-Rev.0E-3",TT_Mile,"55902",-,-,-,100,TK_Complete,20/02/2021,20/02/2021,20/02/2021,20/02/2021,"SI--3332-25 FS","SI--3332-25","SI20XKA2-15 FS,SP--B--2-60 FS,SI--CYA2-15 FS,SI--BZK2-15 FS,SI--BFF2-15 FS,SI--BFT2-15 FS,SI--BZL2-86 FS,SI--BZP2-15 FS,SI20BTA2-15 FS,SI20BUK2-15 FS,SI--CHY2-15 FS,SI--3332-24 FS,SI--BAC2-75 FS,SI--UBA2G75 FS","SI20XKA2-15,SP--B--2-60,SI--CYA2-15,SI--BZK2-15,SI--BFF2-15,SI--BFT2-15,SI--BZL2-86,SI--BZP2-15,SI20BTA2-15,SI20BUK2-15,SI--CHY2-15,SI--3332-24,SI--BAC2-75,SI--UBA2G75",29,29,29,29,6,6,6,6,5,,"HK1003 -Blackpoint D2 - Rev.0E DD30092021"
1-282,SI--3332-25,"APPROVAL SINGLE LINE DIAGRAM",5121,"HK1003-Rev.0E-3",TT_Task,"55902",-,-,-,100,TK_Complete,15/01/2021,15/01/2021,19/02/2021,19/02/2021,"SI--3332-27 FS","SI--3332-27","SI--3332-26 FS,SI--CHY2-15 FS,SI20BFA2-15 SS,SI--BBA2-15 SS","SI--3332-26,SI--CHY2-15,SI20BFA2-15,SI--BBA2-15",23,23,28,28,5,5,6,6,1,,"HK1003 -Blackpoint D2 - Rev.0E DD30092021"
1-283,SI20PAA2-05,"ERECTION MANUALS ON SITE  COOLING TOWER COARSE SCREEN 20PAA",5121,"HK1003-Rev.0E-3",TT_Mile,"55902",-,-,-,0,TK_NotStart,10/08/2022,,10/08/2022,,"SI20PAA3-80 FS","SI20PAA3-80","SI20PAA6-15 FS","SI20PAA6-15",105,,105,,24,,24,,77,1536,"HK1003 -Blackpoint D2 - Rev.0E DD30092021"
1-284,SI20PAH2-05,"ERECTION MANUALS AT SKIDDER CONDENSER TUBE CLEANING SYSTEM 20PAH",5121,"HK1003-Rev.0E-3",TT_Mile,"55902",-,-,-,0,TK_NotStart,02/11/2021,,02/11/2021,,"SI20PAH3-26 SS","SI20PAH3-26","SI20PAH6-10 FS,SI20PAH3-80 FS","SI20PAH6-10,SI20PAH3-80",65,,65,,15,,15,,37,1016,"HK1003 -Blackpoint D2 - Rev.0E DD30092021"
1-285,SI20PAH3-25,"DETAIL DESIGN CONDENSER TUBE CLEANING SYSTEM 20PAH",5121,"HK1003-Rev.0E-3",TT_Task,"55902",-,-,-,100,TK_Complete,15/05/2021,15/05/2021,28/06/2021,28/06/2021,"SI20PAH2-85 FS","SI20PAH2-85","SI20PAH3-26 FS,SI20PAH2-60 FS,SI20PAH2-65 FS,SI20PAH2E60 FS","SI20PAH3-26,SI20PAH2-60,SI20PAH2-65,SI20PAH2E60",41,41,47,47,9,9,11,11,12,,"HK1003 -Blackpoint D2 - Rev.0E DD30092021"
1-286,SI20SMM3-25,"DETAIL AND FABRICATION DESIGN CRANE 20SMM01/02 FOR 20UMC",5121,"HK1003-Rev.0E-3",TT_Task,"55902",-,-,-,95,TK_Active,08/08/2021,08/08/2021,02/10/2021,,"SI--SMM2-86 FS,SI--UMC2B80 FF","SI--SMM2-86,SI--UMC2B80","SI20SMM3-26 FS","SI20SMM3-26",53,53,61,,12,12,14,,25,128,"HK1003 -Blackpoint D2 - Rev.0E DD30092021"
1-287,SI--LD-2A05,"ERECTION MANUALS ON SITE CONDENSATE POLISHING PLANT 20LD",5121,"HK1003-Rev.0E-3",TT_Mile,"55902",-,-,-,0,TK_NotStart,08/07/2022,,08/07/2022,,"SI20LDK3B80 FS","SI20LDK3B80","SI20LDK6B16 FS","SI20LDK6B16",100,,100,,23,,23,,73,296,"HK1003 -Blackpoint D2 - Rev.0E DD30092021"
1-288,SI20LD-3-25,"DETAIL DESIGN CONDENSATE POLISHING PLANT 20LD",5121,"HK1003-Rev.0E-3",TT_Task,"55902",-,-,-,100,TK_Complete,19/05/2021,19/05/2021,27/07/2021,27/07/2021,"SI--LDK2B85 FS,SI--LDK2B80 FS","SI--LDK2B85,SI--LDK2B80","SI20LDK3B32 FS","SI20LDK3B32",41,41,51,51,9,9,12,12,13,,"HK1003 -Blackpoint D2 - Rev.0E DD30092021"
1-289,SI--LD-2-87,"PREPARATION RFQ CONDENSATE POLISHING PLANT 20LD",5121,"HK1003-Rev.0E-3",TT_Task,"55902",-,-,-,100,TK_Complete,03/03/2021,03/03/2021,18/03/2021,18/03/2021,"SI--3331-32 FS,SI--LD-2-86 FS,SI--LDK2B05 FS","SI--3331-32,SI--LD-2-86,SI--LDK2B05","SI--LDK2B80 FS","SI--LDK2B80",30,30,32,32,7,7,7,7,5,,"HK1003 -Blackpoint D2 - Rev.0E DD30092021"
1-290,SI--LD-2-86,"(DF) P&ID's CONDENSATE POLISHING PLANT 20LD",5121,"HK1003-Rev.0E-3",TT_FinMile,"55902",-,-,-,100,TK_Complete,02/03/2021,02/03/2021,02/03/2021,02/03/2021,"SI--LDK2B05 FS","SI--LDK2B05","SI--LD-2-87 FS","SI--LD-2-87",30,30,30,30,7,7,7,7,5,,"HK1003 -Blackpoint D2 - Rev.0E DD30092021"
1-291,SI20QC-2-65,"(DF) INPUT FOR M2 DOSING CONTAINER QC",5121,"HK1003-Rev.0E-3",TT_FinMile,"55902",-,-,-,100,TK_Complete,13/08/2021,13/08/2021,13/08/2021,13/08/2021,"SI20QC-2-85 FS,SI20QC-2-80 FS","SI20QC-2-85,SI20QC-2-80","SI---5P2A10 FS","SI---5P2A10",53,53,53,53,12,12,12,12,25,,"HK1003 -Blackpoint D2 - Rev.0E DD30092021"
1-292,SI20QC-2-89,"(DF) INPUT FOR MS3 DOSING CONTAINER QC",5121,"HK1003-Rev.0E-3",TT_FinMile,"55902",-,-,-,100,TK_Complete,31/08/2021,31/08/2021,31/08/2021,31/08/2021,"SI20QC-2-75 FS,SI20QC-2-85 FS","SI20QC-2-75,SI20QC-2-85","SI20USX2-5 FS","SI20USX2-5",56,56,56,56,13,13,13,13,27,,"HK1003 -Blackpoint D2 - Rev.0E DD30092021"
1-293,SI20QC-2-06,"ERECTION MANUALS ON SITE  DOSING CONTAINER 20QC",5121,"HK1003-Rev.0E-3",TT_Mile,"55902",-,-,-,0,TK_NotStart,17/08/2022,,17/08/2022,,"SI20QC-3-80 FS","SI20QC-3-80","SI20QC-6-15 FS","SI20QC-6-15",106,,106,,24,,24,,78,1632,"HK1003 -Blackpoint D2 - Rev.0E DD30092021"
1-294,SI20S--2J31,"ERECTION MANUAL ON SITE HVAC SYSTEM SA/SB FOR UMC",5121,"HK1003-Rev.0E-3",TT_Mile,"55902",-,-,-,0,TK_NotStart,13/10/2022,,13/10/2022,,"SI20SAM4-25 SS","SI20SAM4-25","SI20SAM6E15 FS,SI20S--4-41 FS","SI20SAM6E15,SI20S--4-41",114,,114,,26,,26,,83,1080,"HK1003 -Blackpoint D2 - Rev.0E DD30092021"
1-295,SI20SAM4B11,"LOGISTICS AND CUSTOMS PREPARATION EQUIPMENT FOR HVAC SYSTEM UMC 20SA",5121,"HK1003-Rev.0E-3",TT_Task,"55902",-,-,-,0,TK_NotStart,06/03/2022,,02/04/2022,,"SI20SAM3B71 FS","SI20SAM3B71","SI20S--3-81 FS","SI20S--3-81",83,,87,,19,,20,,52,1960,"HK1003 -Blackpoint D2 - Rev.0E DD30092021"
1-296,SI20SAM3B71,"TIMES OF COMPLETION (FINAL DATA IN KANLOG) EQUIPMENT FOR HVAC SYSTEM UMC 20SA",5121,"HK1003-Rev.0E-3",TT_FinMile,"55902",-,-,-,0,TK_NotStart,05/03/2022,,05/03/2022,,"SI20SAM3E31 FS","SI20SAM3E31","SI20SAM4B11 FS","SI20SAM4B11",83,,83,,19,,19,,52,1960,"HK1003 -Blackpoint D2 - Rev.0E DD30092021"
1-297,SI20S--4-41,"(OTD-OS) ON SITE EQUIPMENT FOR HVAC SYSTEM UMC 20SA",5121,"HK1003-Rev.0E-3",TT_FinMile,"55902",-,-,-,0,TK_NotStart,13/10/2022,,13/10/2022,,"SI20SAM4-26 FS,SI20S--2J31 FS","SI20SAM4-26,SI20S--2J31","SI20SAM6E15 FS","SI20SAM6E15",114,,114,,26,,26,,83,1080,"HK1003 -Blackpoint D2 - Rev.0E DD30092021"
1-298,SI20SAM3E31,"MANUFACTURING SHOP TEST EQUIPMENT FOR HVAC SYSTEM UMC 20SA",5121,"HK1003-Rev.0E-3",TT_Task,"55902",-,-,-,0,TK_NotStart,07/11/2021,,05/03/2022,,"SI--2222-30 FS,SI20S--3J25 FS,SI20SA-2-85 FS,SI20S--2J29 FS","SI--2222-30,SI20S--3J25,SI20SA-2-85,SI20S--2J29","SI20SAM3B71 FS","SI20SAM3B71",66,,83,,15,,19,,37,1960,"HK1003 -Blackpoint D2 - Rev.0E DD30092021"
1-299,SI20S--3-81,"(RFS) READY FOR SHIPMENT EQUIPMENT FOR HVAC SYSTEM UMC 20SA",5121,"HK1003-Rev.0E-3",TT_FinMile,"55902",-,-,-,0,TK_NotStart,02/04/2022,,02/04/2022,,"SI20SAM4B11 FS","SI20SAM4B11","SI20SAM4-26 FS","SI20SAM4-26",87,,87,,20,,20,,55,1960,"HK1003 -Blackpoint D2 - Rev.0E DD30092021"
1-300,SI20SAM4-26,"TRANSPORT EQUIPMENT FOR HVAC SYSTEM UMC 20SA",5121,"HK1003-Rev.0E-3",TT_Task,"55902",-,-,-,0,TK_NotStart,03/04/2022,,24/06/2022,,"SI20S--3-81 FS","SI20S--3-81","SI20S--4-41 FS","SI20S--4-41",87,,98,,20,,23,,55,1960,"HK1003 -Blackpoint D2 - Rev.0E DD30092021"
1-301,SI20S--2J35,"(DF) DETAIL DESIGN DWGS HVAC SYSTEM SA/SB FOR UMC WITH CONTRACTOR",5121,"HK1003-Rev.0E-3",TT_FinMile,"55902",-,-,-,100,TK_Complete,26/09/2021,26/09/2021,26/09/2021,26/09/2021,"SI20S--3J25 FS","SI20S--3J25","SI20SAM3E25 FS","SI20SAM3E25",60,60,60,60,14,14,14,14,30,,"HK1003 -Blackpoint D2 - Rev.0E DD30092021"
1-302,SI20S--2J29,"(DF) INPUT FOR MS3 HVAC SYSTEM SA/SB UMC SA",5121,"HK1003-Rev.0E-3",TT_FinMile,"55902",-,-,-,100,TK_Complete,05/09/2021,05/09/2021,05/09/2021,05/09/2021,"SI20SA-2-85 FS","SI20SA-2-85","SI20SAM3E31 FS","SI20SAM3E31",57,57,57,57,13,13,13,13,28,,"HK1003 -Blackpoint D2 - Rev.0E DD30092021"
1-303,SI--SA-2-31,"KICK OFF FINISHED HVAC SYSTEM SA",5121,"HK1003-Rev.0E-3",TT_FinMile,"55902",-,-,-,100,TK_Complete,22/04/2021,22/04/2021,22/04/2021,22/04/2021,"SI--SA-2-01 FS,SI20SA-2-75 FS","SI--SA-2-01,SI20SA-2-75","SI20SA-2-85 FS","SI20SA-2-85",37,37,37,37,8,8,8,8,9,,"HK1003 -Blackpoint D2 - Rev.0E DD30092021"
1-304,SI--SG-2-30,"INTERMEDIATE FIRE- & EXPLOSION PROTECTION CONCEPT",5121,"HK1003-Rev.0E-3",TT_Task,"55902",-,-,-,100,TK_Complete,29/09/2020,29/09/2020,19/10/2020,19/10/2020,"SI--SG-2-20 FS","SI--SG-2-20","SI--SG-2-40 FS,SI--SG-2-90 FS,SI--SG-2-102 FS,SI--SG-2-103 FS","SI--SG-2-40,SI--SG-2-90,SI--SG-2-102,SI--SG-2-103",8,8,11,11,1,1,2,2,0,,"HK1003 -Blackpoint D2 - Rev.0E DD30092021"
1-305,SI--SGA2-05,"ERECTION MANUALS ON SITE FOR FIRE FIGHTING PUMP CONTAINER 20SGA",5121,"HK1003-Rev.0E-3",TT_Mile,"55902",-,-,-,0,TK_NotStart,31/10/2022,,31/10/2022,,"SI20SGA3-81 FS","SI20SGA3-81","SI20SGA4-44 FS","SI20SGA4-44",117,,117,,27,,27,,84,208,"HK1003 -Blackpoint D2 - Rev.0E DD30092021"
1-306,SI--SGA2-31,"(DF) INPUT FOR MS3 FIRE FIGHTING PUMP CONTAINER 20SGA",5121,"HK1003-Rev.0E-3",TT_FinMile,"55902",-,-,-,100,TK_Complete,27/09/2021,27/09/2021,27/09/2021,27/09/2021,"SI--SG-2-85 FS","SI--SG-2-85","SI--PM-2-60 FS","SI--PM-2-60",60,60,60,60,14,14,14,14,30,,"HK1003 -Blackpoint D2 - Rev.0E DD30092021"
1-307,SI20SGA3-81,"(RFS) READY FOR SHIPMENT FIRE FIGHTING PUMP CONTAINER 20SGA",5121,"HK1003-Rev.0E-3",TT_FinMile,"55902",-,-,-,0,TK_NotStart,14/02/2022,,14/02/2022,,"SI20SGA4-11 FS","SI20SGA4-11","SI--SGA2-05 FS,SI20SGA4-26 FS","SI--SGA2-05,SI20SGA4-26",80,,80,,18,,18,,49,2104,"HK1003 -Blackpoint D2 - Rev.0E DD30092021"
1-308,SI20SGA4-44,"ON SITE FIRE FIGHTING PUMP CONTAINER 20SGA",5121,"HK1003-Rev.0E-3",TT_FinMile,"55902",-,-,-,0,TK_NotStart,27/11/2022,,27/11/2022,,"SI--SGA2-05 FS,SI20SGA4-26 FS","SI--SGA2-05,SI20SGA4-26","SI20SGA6A27 FS","SI20SGA6A27",121,,121,,28,,28,,86,208,"HK1003 -Blackpoint D2 - Rev.0E DD30092021"
1-309,SI20SGA3-26,"DETAIL DESIGN / MANUFACTURING / SHOP TEST FIRE FIGHTING PUMP CONTAINER 20SGA",5121,"HK1003-Rev.0E-3",TT_Task,"55902",-,-,-,15,TK_Active,10/09/2021,10/09/2021,17/01/2022,,"SI--SG-2-50 FS,SI--SG-2-18 FS,SI--SG-2-85 FS,SI--SG-2-95 FS","SI--SG-2-50,SI--SG-2-18,SI--SG-2-85,SI--SG-2-95","SI20SGA3-71 FS","SI20SGA3-71",57,57,76,,13,13,17,,29,2104,"HK1003 -Blackpoint D2 - Rev.0E DD30092021"
1-310,SI20SGA4-26,"TRANSPORT FIRE FIGHTING PUMP CONTAINER 20SGA",5121,"HK1003-Rev.0E-3",TT_Task,"55902",-,-,-,0,TK_NotStart,10/10/2022,,27/11/2022,,"SI20SGA3-81 FS","SI20SGA3-81","SI20SGA4-44 FS","SI20SGA4-44",114,,121,,26,,28,,83,208,"HK1003 -Blackpoint D2 - Rev.0E DD30092021"
1-311,SI20SGA4-11,"LOGISTICS AND CUSTOMS PREPARATION FIRE FIGHTING PUMP CONTAINER 20SGA",5121,"HK1003-Rev.0E-3",TT_Task,"55902",-,-,-,0,TK_NotStart,18/01/2022,,14/02/2022,,"SI20SGA3-71 FS","SI20SGA3-71","SI20SGA3-81 FS","SI20SGA3-81",76,,80,,17,,18,,46,2104,"HK1003 -Blackpoint D2 - Rev.0E DD30092021"
1-312,SI20SGA3-71,"TIMES OF COMPLETION (FINAL DATA IN KANLOG) FIRE FIGHTING PUMP CONTAINER 20SGA",5121,"HK1003-Rev.0E-3",TT_FinMile,"55902",-,-,-,0,TK_NotStart,17/01/2022,,17/01/2022,,"SI20SGA3-26 FS","SI20SGA3-26","SI20SGA4-11 FS","SI20SGA4-11",76,,76,,17,,17,,46,2104,"HK1003 -Blackpoint D2 - Rev.0E DD30092021"
1-313,SI--SG-2-06,"ERECTION MANUALS ON SITE FOR FIRE FIGHTING RING MAIN SGA",5121,"HK1003-Rev.0E-3",TT_Mile,"55902",-,-,-,0,TK_NotStart,03/06/2022,,03/06/2022,,"SI--SGA3A80 FS","SI--SGA3A80","SI20SGA6A26 FS","SI20SGA6A26",95,,95,,22,,22,,68,208,"HK1003 -Blackpoint D2 - Rev.0E DD30092021"
1-314,SI--SGY2-05,"ERECTION MANUALS ON SITE FOR FIRE FIGHTING SYSTEMS SGY",5121,"HK1003-Rev.0E-3",TT_Mile,"55902",-,-,-,0,TK_NotStart,04/03/2022,,04/03/2022,,"SI20SGY3A25 SS","SI20SGY3A25","SI20SGY7A15 FS,SI20SGY6-22 FS,SI20SGY7-15 FS,SI20SGY7-17 FS,SI20SGY8A25 FS,SI20SGY3A80 FS","SI20SGY7A15,SI20SGY6-22,SI20SGY7-15,SI20SGY7-17,SI20SGY8A25,SI20SGY3A80",82,,82,,19,,19,,51,1952,"HK1003 -Blackpoint D2 - Rev.0E DD30092021"
1-315,SI--SG-2-05,"ERECTION MANUALS ON SITE FOR FIRE FIGHTING SYSTEMS 20SGC/SGE/SGF/SGJ",5121,"HK1003-Rev.0E-3",TT_Mile,"55902",-,-,-,0,TK_NotStart,25/08/2022,,25/08/2022,,"SI20SG-4-10 FS","SI20SG-4-10","SI20SGM6-18 FS,SI20SGC6-15 FS,SI20SGE6E15 FS,SI20SGM6-15 FS,SI20SGC6J15 FS,SI20SGJ6A15 FS,SI20SGC6J16 FS","SI20SGM6-18,SI20SGC6-15,SI20SGE6E15,SI20SGM6-15,SI20SGC6J15,SI20SGJ6A15,SI20SGC6J16",107,,107,,25,,25,,79,408,"HK1003 -Blackpoint D2 - Rev.0E DD30092021"
1-316,SI--SG-2-46,"(DF) INPUT FOR MS3 FIRE FIGHTING SYSTEMS SGC/SGE/SGF/SGJ",5121,"HK1003-Rev.0E-3",TT_FinMile,"55902",-,-,-,0,TK_NotStart,07/10/2021,,07/10/2021,,"SI--SG-2-85 FS,SI--SG-2-87 FS","SI--SG-2-85,SI--SG-2-87","SI20UMC3B25 FF,SI--PM-2-60 FS","SI20UMC3B25,SI--PM-2-60",61,,61,,14,,14,,32,784,"HK1003 -Blackpoint D2 - Rev.0E DD30092021"
1-317,SI--SG-2-18,"BASIC DESIGN DWGS FIRE FIGHTING SYSTEMS SG- AVAILABLE",5121,"HK1003-Rev.0E-3",TT_Mile,"55902",-,-,-,100,TK_Complete,24/07/2021,24/07/2021,24/07/2021,24/07/2021,"SI--SG-2-16 FS","SI--SG-2-16","SI20SGA3-25 FS,SI20SGA3-26 FS,SI20SGY3A25 FS,SI20SG-3-25 FS,SI--SG-2-85 FS","SI20SGA3-25,SI20SGA3-26,SI20SGY3A25,SI20SG-3-25,SI--SG-2-85",51,51,51,51,11,11,11,11,22,,"HK1003 -Blackpoint D2 - Rev.0E DD30092021"
1-318,SI--SG-2-43,"PREP. RFQ FIRE FIGHTING SYSTEMS SG-",5121,"HK1003-Rev.0E-3",TT_Task,"55902",-,-,-,100,TK_Complete,02/07/2021,02/07/2021,15/07/2021,15/07/2021,"SI--3331-32 FS,SI--SG-2-17 SS,SI--SG-2-87 FS,SI--SG-2-88 SS","SI--3331-32,SI--SG-2-17,SI--SG-2-87,SI--SG-2-88","SI--SG-2-80 FS","SI--SG-2-80",47,47,49,49,11,11,11,11,20,,"HK1003 -Blackpoint D2 - Rev.0E DD30092021"
1-319,SI--SG-2-17,"BASIC DESIGN FIRE FIGHTING RING MAIN SGA (prel. LH020)",5121,"HK1003-Rev.0E-3",TT_Task,"55902",-,-,-,100,TK_Complete,31/05/2021,31/05/2021,11/07/2021,11/07/2021,"SI--SG-2-15 FF,SI--SG-2-15 FS","SI--SG-2-15,SI--SG-2-15","SI--SG-2-43 SS","SI--SG-2-43",43,43,49,49,10,10,11,11,15,,"HK1003 -Blackpoint D2 - Rev.0E DD30092021"
1-320,SI--PAD2-05,"ERECTION MANUALS ON SITE MECHANICAL EQUIPMENT PAD",5121,"HK1003-Rev.0E-3",TT_Mile,"55902",-,-,-,0,TK_NotStart,01/07/2022,,01/07/2022,,"SI--PAD3-80 FS","SI--PAD3-80","SI20PAD6-30 FS","SI20PAD6-30",99,,99,,23,,23,,72,64,"HK1003 -Blackpoint D2 - Rev.0E DD30092021"
1-321,SI20PAD3-24,"DETAIL DESIGN COOLING TOWER EQUIPMENT 20PAD",5121,"HK1003-Rev.0E-3",TT_Task,"55902",-,-,-,100,TK_Complete,19/02/2021,19/02/2021,05/07/2021,05/07/2021,"SI--PAD2-85 FS","SI--PAD2-85","SI--PAD3B70 FF,SI20PAD3-25# FS,SI20PAD3-81 FS,SI20PAD3-82 FS,SI20PAD3-83 FS,SI20PAD3-84 FS,SI20PAD3-85 FS,SI20PAD3-86 FS,SI20PAD3-87 FS,SI20PAD3-100 FS,SI20PAD3-101 FS,SI20PAD3-104 FS,SI20PAD3-105 FS,SI20PAD3-108 FS,SI20PAD3-110 FS,SI20PAD3-112 FS","SI--PAD3B70,SI20PAD3-25#,SI20PAD3-81,SI20PAD3-82,SI20PAD3-83,SI20PAD3-84,SI20PAD3-85,SI20PAD3-86,SI20PAD3-87,SI20PAD3-100,SI20PAD3-101,SI20PAD3-104,SI20PAD3-105,SI20PAD3-108,SI20PAD3-110,SI20PAD3-112",28,28,48,48,6,6,11,11,5,,"HK1003 -Blackpoint D2 - Rev.0E DD30092021"
1-322,SI--EK-2-07,"ERECTION MANUALS ON SITE  FUEL GAS RECEIVING AND MIXING SYSTEM EK",5121,"HK1003-Rev.0E-3",TT_Mile,"55902",-,-,-,0,TK_NotStart,27/06/2022,,27/06/2022,,"SI20EK-3-81 FS","SI20EK-3-81","SI20EK-6-19 FS,SI-P222-154 FS","SI20EK-6-19,SI-P222-154",99,,99,,23,,23,,71,600,"HK1003 -Blackpoint D2 - Rev.0E DD30092021"
1-323,SI--EK-2-81,"QUOTATION STAGE FUEL GAS RECEIVING AND MIXING SYSTEM EK",5121,"HK1003-Rev.0E-3",TT_Task,"55902",-,-,-,100,TK_Complete,31/03/2021,31/03/2021,27/06/2021,27/06/2021,"SI--EK-2-77 FS","SI--EK-2-77","SI--EK-2-86 FS","SI--EK-2-86",34,34,47,47,8,8,11,11,7,,"HK1003 -Blackpoint D2 - Rev.0E DD30092021"
1-324,SI--EK-2-77,"BASIC DESIGN / PREP. RFQ FUEL GAS RECEIVING AND MIXING SYSTEM EK",5121,"HK1003-Rev.0E-3",TT_Task,"55902",-,-,-,100,TK_Complete,26/01/2021,26/01/2021,30/03/2021,30/03/2021,"SI--3331-32 FS,SI--SG-2-10 FF,SI-----1-03 SS,SI-----1-05 FS","SI--3331-32,SI--SG-2-10,SI-----1-03,SI-----1-05","SI--EK-2-81 FS,SI--EK-2-06 FS,SI--UEN2-40 FS","SI--EK-2-81,SI--EK-2-06,SI--UEN2-40",25,25,34,34,5,5,8,8,3,,"HK1003 -Blackpoint D2 - Rev.0E DD30092021"
1-325,SP20MA-2-81,"ORDER ENTRY STEAM TURBINE",5121,"HK1003-Rev.0E-3",TT_Mile,"55902",-,-,-,100,TK_Complete,15/01/2021,15/01/2021,15/01/2021,15/01/2021,"SI-----1-05 SS","SI-----1-05","SP20MA-3-25 FS,SP20MAX3-25 SS,SP20MAW3-25 SS,SP20MAV3-25 SS,SP20MAN3-26 SS,SP20MAG3-25 SS,SP20MAD3-25 SS,SP20MA2B43 FS,SP20MA-3-84 FS,SP20MA-3-86 FS,SP20MAD3-81 FS,SP20MA-3-88 FS","SP20MA-3-25,SP20MAX3-25,SP20MAW3-25,SP20MAV3-25,SP20MAN3-26,SP20MAG3-25,SP20MAD3-25,SP20MA2B43,SP20MA-3-84,SP20MA-3-86,SP20MAD3-81,SP20MA-3-88",23,23,23,23,5,5,5,5,1,,"HK1003 -Blackpoint D2 - Rev.0E DD30092021"
1-326,SI--EK-2-05,"ERECTION MANUALS ON SITE  GAS FINAL FILTER/ PREHEATER EKG02Y",5121,"HK1003-Rev.0E-3",TT_Mile,"55902",-,-,-,0,TK_NotStart,04/12/2022,,04/12/2022,,"SI20EK-3-80 FS","SI20EK-3-80","SI20EK-6-15 FS,SI-P222-154 FS","SI20EK-6-15,SI-P222-154",122,,122,,28,,28,,86,16,"HK1003 -Blackpoint D2 - Rev.0E DD30092021"
1-327,SI20EK-3-27,"DETAIL DESIGN FUEL GAS RECEIVING AND MIXING SYSTEM 01EK",5121,"HK1003-Rev.0E-3",TT_Task,"55902",-,-,-,100,TK_Complete,28/06/2021,28/06/2021,12/08/2021,12/08/2021,"SI--EK-2-86 FS","SI--EK-2-86","SI20EK-3-82 FS","SI20EK-3-82",47,47,53,53,11,11,12,12,19,,"HK1003 -Blackpoint D2 - Rev.0E DD30092021"
1-328,SI20SMM2-83,"ERECTION MANUAL ON SITE CRANE SMM01/02/3 FOR 20UMC",5121,"HK1003-Rev.0E-3",TT_Mile,"55902",-,-,-,0,TK_NotStart,16/12/2021,,16/12/2021,,"SI20SMM4-10 SS","SI20SMM4-10","SI20SMM6-05 FS","SI20SMM6-05",71,,71,,16,,16,,42,912,"HK1003 -Blackpoint D2 - Rev.0E DD30092021"
1-329,SI20PAB3-30,"MANUFACTURING PIPING SYSTEM (OUTSIDE) 20PAB",5121,"HK1003-Rev.0E-3",TT_Task,"55902",-,-,-,100,TK_Complete,28/03/2021,28/03/2021,26/06/2021,26/06/2021,"SI20PAB3-20 SS","SI20PAB3-20","SI20PAB5-70 FS,SI20PAB5-60 FS,SI20PAB4-50 FS,SI20PAB4-56 FS","SI20PAB5-70,SI20PAB5-60,SI20PAB4-50,SI20PAB4-56",34,34,47,47,7,7,10,10,7,,"HK1003 -Blackpoint D2 - Rev.0E DD30092021"
1-330,SI20UMC2B35,"CLIENT - REVIEW - BUILDING DETAIL DESIGN CONCRETE 20UMC",5121,"HK1003-Rev.0E-3",TT_Task,"55902",-,-,-,100,TK_Complete,16/07/2021,16/07/2021,09/08/2021,09/08/2021,"SI20UMC2B20 FS,SI20UMC2B25 FS","SI20UMC2B20,SI20UMC2B25","SI20UMC2B55 FS,SI20UMC2B40 SS","SI20UMC2B55,SI20UMC2B40",49,49,53,53,11,11,12,12,22,,"HK1003 -Blackpoint D2 - Rev.0E DD30092021"
1-331,SI20UMC2B25,"PREPARATION FOUNDATION GROUNDING DWGS 20UMC",5121,"HK1003-Rev.0E-3",TT_Task,"55902",-,-,-,100,TK_Complete,02/07/2021,02/07/2021,15/07/2021,15/07/2021,"SI20UMC2B20 FF","SI20UMC2B20","SI20UMC2B35 FS","SI20UMC2B35",47,47,49,49,11,11,11,11,20,,"HK1003 -Blackpoint D2 - Rev.0E DD30092021"
1-332,SI20UMC2B15,"BASIC DESIGN / BASIC BUILDING DESIGN INCL. 3D MODEL BUILDING FOUNDATION 20UMC",5121,"HK1003-Rev.0E-3",TT_Task,"55902",-,-,-,100,TK_Complete,15/05/2021,15/05/2021,28/05/2021,28/05/2021,"SI20UMC2B10 SS","SI20UMC2B10","SI20UMC2B20 FS","SI20UMC2B20",41,41,42,42,9,9,10,10,12,,"HK1003 -Blackpoint D2 - Rev.0E DD30092021"
1-333,SI--UMC2Y81,"PREPARATION FOUNDATION GROUNDING DWGS CEP/LDK PIT 20UMC",5121,"HK1003-Rev.0E-3",TT_Task,"55902",-,-,-,100,TK_Complete,02/03/2021,02/03/2021,15/03/2021,15/03/2021,"SI--UMC2Y70 FF","SI--UMC2Y70","SI--UMC2A79 FF","SI--UMC2A79",30,30,32,32,7,7,7,7,5,,"HK1003 -Blackpoint D2 - Rev.0E DD30092021"
1-334,SI--UMC2Y79,"BASIC DESIGN CEP/LDK PIT 20UMC",5121,"HK1003-Rev.0E-3",TT_Task,"55902",-,-,-,100,TK_Complete,01/01/2021,01/01/2021,22/02/2021,22/02/2021,"SI--UMC2Y82 FS","SI--UMC2Y82","SI--UMC2Y70 FS","SI--UMC2Y70",21,21,29,29,5,5,6,6,1,,"HK1003 -Blackpoint D2 - Rev.0E DD30092021"
1-335,SI--UMC2E78,"HANDRAILS AND GRATING DWGS & CONNECTION FORCE REPORT LOT1 20UMC",5121,"HK1003-Rev.0E-3",TT_Task,"55902",-,-,-,100,TK_Complete,27/05/2021,27/05/2021,16/06/2021,16/06/2021,"SI--UMC2E70 FF","SI--UMC2E70","SI--UMC2F75 FS","SI--UMC2F75",42,42,45,45,9,9,10,10,14,,"HK1003 -Blackpoint D2 - Rev.0E DD30092021"
1-336,SI--UBA2D78,"HANDRAILS AND GRATING DWGS & CONNECTION FORCE REPORT 20UBA8110/20",5121,"HK1003-Rev.0E-3",TT_Task,"55902",-,-,-,0,TK_NotStart,15/10/2021,,04/11/2021,,"SI20UBA2B-38 FS","SI20UBA2B-38","SI--UBA2D70 FF","SI--UBA2D70",62,,65,,14,,15,,34,1696,"HK1003 -Blackpoint D2 - Rev.0E DD30092021"
1-337,SI20UBA2B-15,"HANDRAILS AND GRATING DWGS & CONNECTION FORCE REPORT 20UBA1110/20",5121,"HK1003-Rev.0E-3",TT_Task,"55902",-,-,-,0,TK_NotStart,18/11/2021,,08/12/2021,,"SI20UBA2B-10 FF","SI20UBA2B-10","SI20UBA2B-20 FS,SI20UBA2B-30 FS","SI20UBA2B-20,SI20UBA2B-30",67,,70,,15,,16,,38,968,"HK1003 -Blackpoint D2 - Rev.0E DD30092021"
1-338,SI--UBF2B78,"HANDRAILS AND GRATING DWGS & CONNECTION FORCE REPORT 20UBE/UBF",5121,"HK1003-Rev.0E-3",TT_Task,"55902",-,-,-,100,TK_Complete,20/07/2021,20/07/2021,09/08/2021,09/08/2021,"SI--UBF2B70 FF","SI--UBF2B70","SI--UBF2B75 FS","SI--UBF2B75",50,50,53,53,11,11,12,12,22,,"HK1003 -Blackpoint D2 - Rev.0E DD30092021"
1-339,SI20UBD2-84,"FOUNDATION GROUNDING DWGS  20UBD01/02",5121,"HK1003-Rev.0E-3",TT_Task,"55902",-,-,-,81,TK_Active,13/09/2021,13/09/2021,03/10/2021,,"SI20UBD2-15 FF","SI20UBD2-15","SI20UBD2-75 FS","SI20UBD2-75",58,58,61,,13,13,14,,29,2728,"HK1003 -Blackpoint D2 - Rev.0E DD30092021"
1-340,SI20UEY2-77,"BASIC DESIGN / BASIC BUILDING DESIGN INCL. 3D MODEL 20UEY03-05",5121,"HK1003-Rev.0E-3",TT_Task,"55902",-,-,-,100,TK_Complete,11/06/2021,11/06/2021,01/07/2021,01/07/2021,"SI20UEY2-60 FS","SI20UEY2-60","SI20UEY2-70 FS","SI20UEY2-70",44,44,47,47,10,10,11,11,16,,"HK1003 -Blackpoint D2 - Rev.0E DD30092021"
1-341,SI20UEN2-12,"BASIC DESIGN / BASIC BUILDING DESIGN INCL. 3D MODEL 01UEN",5121,"HK1003-Rev.0E-3",TT_Task,"55902",-,-,-,100,TK_Complete,02/08/2021,02/08/2021,21/08/2021,21/08/2021,"SI20UEN2-60 FS","SI20UEN2-60","SI--UEN2-85 FF,SI20UEN2-90 FS,SI-P222-62 SS","SI--UEN2-85,SI20UEN2-90,SI-P222-62",52,52,55,55,12,12,12,12,24,,"HK1003 -Blackpoint D2 - Rev.0E DD30092021"
1-342,SI--URD2-71,"CLIENT - REVIEW - DETAIL DESIGN CONCRETE 20URD xx",5121,"HK1003-Rev.0E-3",TT_Task,"55902",-,-,-,100,TK_Complete,14/07/2021,14/07/2021,07/08/2021,07/08/2021,"SI--URD2-74 FS,SI--URD2-70 FS","SI--URD2-74,SI--URD2-70","SI--URD2-78 SS","SI--URD2-78",49,49,53,53,11,11,12,12,21,,"HK1003 -Blackpoint D2 - Rev.0E DD30092021"
1-343,SI--URD2-74,"BASIC DESIGN FREEZE / REVIEW / APPROVAL 20URD xx",5121,"HK1003-Rev.0E-3",TT_Mile,"55902",-,-,-,100,TK_Complete,30/05/2021,30/05/2021,30/05/2021,30/05/2021,"SI--URD2-77 FS","SI--URD2-77","SI--URD2-71 FS,SI--URD2-70 FS","SI--URD2-71,SI--URD2-70",43,43,43,43,10,10,10,10,14,,"HK1003 -Blackpoint D2 - Rev.0E DD30092021"
1-344,SI--URD2-77,"BASIC BUILDING DESIGN INCL. 3D MODEL 20URD xx",5121,"HK1003-Rev.0E-3",TT_Task,"55902",-,-,-,100,TK_Complete,02/05/2021,02/05/2021,29/05/2021,29/05/2021,"SI--UR-2-35 FS,SI--URD2-60 FF","SI--UR-2-35,SI--URD2-60","SI--URD2-70 FS,SI--URD2-74 FS","SI--URD2-70,SI--URD2-74",39,39,43,43,9,9,10,10,10,,"HK1003 -Blackpoint D2 - Rev.0E DD30092021"
1-345,SI20UBA2C77,"BASIC BUILDING DESIGN INCL. 3D MODEL 20UBA8110/20",5121,"HK1003-Rev.0E-3",TT_Task,"55902",-,-,-,100,TK_Complete,20/05/2021,20/05/2021,16/06/2021,16/06/2021,"SI20UBA2I60 FS,SI--UBA2-81 SS","SI20UBA2I60,SI--UBA2-81","SI20UBA2C61 FS","SI20UBA2C61",41,41,45,45,9,9,10,10,13,,"HK1003 -Blackpoint D2 - Rev.0E DD30092021"
1-346,SI20UHX2-20,"PREPARATION FOUNDATION GROUNDING 20UHX",5121,"HK1003-Rev.0E-3",TT_Task,"55902",-,-,-,100,TK_Complete,15/09/2021,15/09/2021,28/09/2021,28/09/2021,"SI20UHX2-42 FF","SI20UHX2-42","SI20UHX2-40 FS","SI20UHX2-40",58,58,60,60,13,13,14,14,29,,"HK1003 -Blackpoint D2 - Rev.0E DD30092021"
1-347,SI20UHX2-5,"BASIC BUILDING DESIGN INCL. 3D MODEL 20UHX (if required)",5121,"HK1003-Rev.0E-3",TT_Task,"55902",-,-,-,0,TK_NotStart,15/11/2021,,05/12/2021,,"SI20UHX2-10 FS","SI20UHX2-10","SI20UHX2-15 FS","SI20UHX2-15",67,,70,,15,,16,,38,3088,"HK1003 -Blackpoint D2 - Rev.0E DD30092021"
1-348,SI--UMY2-78,"PREPARATION FOUNDATION GROUNDING DWGS 20ULY/UMY",5121,"HK1003-Rev.0E-3",TT_Task,"55902",-,-,-,100,TK_Complete,30/06/2021,30/06/2021,13/07/2021,13/07/2021,"SI--UMY2-30 FF","SI--UMY2-30","SI20UMY2-50 FS","SI20UMY2-50",47,47,49,49,11,11,11,11,19,,"HK1003 -Blackpoint D2 - Rev.0E DD30092021"
1-349,SI--UMY2-77,"BASIC BUILDING DESIGN INCL. 3D MODEL 20ULY/UMY",5121,"HK1003-Rev.0E-3",TT_Task,"55902",-,-,-,100,TK_Complete,09/05/2021,09/05/2021,29/05/2021,29/05/2021,"SI--UMY2-60 FS,SI--UM-2-35 FS","SI--UMY2-60,SI--UM-2-35","SI--UMY2-30 FS","SI--UMY2-30",40,40,43,43,9,9,10,10,11,,"HK1003 -Blackpoint D2 - Rev.0E DD30092021"
1-350,SI--ULA2-71,"CLIENT - REVIEW - DETAIL DESIGN CONCRETE 20ULA",5121,"HK1003-Rev.0E-3",TT_Task,"55902",-,-,-,100,TK_Complete,03/07/2021,03/07/2021,27/07/2021,27/07/2021,"SI--ULA2-70 FS,SI--ULA2-50 FS","SI--ULA2-70,SI--ULA2-50","SI--ULA2-75 FS,SI--ULA2-78 FF","SI--ULA2-75,SI--ULA2-78",48,48,51,51,11,11,12,12,20,,"HK1003 -Blackpoint D2 - Rev.0E DD30092021"
1-351,SI--ULA2-77,"BASIC DESIGN / BASIC BUILDING DESIGN INCL. 3D MODEL 20ULA",5121,"HK1003-Rev.0E-3",TT_Task,"55902",-,-,-,100,TK_Complete,05/05/2021,05/05/2021,18/05/2021,18/05/2021,"SI--ULA2-60 FS","SI--ULA2-60","SI--ULA2-70 FS","SI--ULA2-70",39,39,41,41,9,9,9,9,11,,"HK1003 -Blackpoint D2 - Rev.0E DD30092021"
1-352,SI20UBA2-10,"BASIC BUILDING DESIGN INCL. 3D MODEL 20UBA1110/20",5121,"HK1003-Rev.0E-3",TT_Task,"55902",-,-,-,100,TK_Complete,20/05/2021,20/05/2021,07/07/2021,07/07/2021,"SI20UBA2-5 FF,SI--UB-2-35 FS,SI20UBA2-5 FS,SI--UBA2-81 SS","SI20UBA2-5,SI--UB-2-35,SI20UBA2-5,SI--UBA2-81","SI20UBA2-15 FS,SI20UBA2-15 FF","SI20UBA2-15,SI20UBA2-15",41,41,48,48,9,9,11,11,13,,"HK1003 -Blackpoint D2 - Rev.0E DD30092021"
1-353,SI20USX2-20,"PREPARATION FOUNDATION GROUNDING DWGS 20USX",5121,"HK1003-Rev.0E-3",TT_Task,"55902",-,-,-,0,TK_NotStart,22/10/2021,,04/11/2021,,"SI20USX2-42 FF","SI20USX2-42","SI20USX2-25 FS","SI20USX2-25",63,,65,,14,,15,,35,2392,"HK1003 -Blackpoint D2 - Rev.0E DD30092021"
1-354,SI20USX2-10,"BASIC BUILDING DESIGN INCL. 3D MODEL  20USX",5121,"HK1003-Rev.0E-3",TT_Task,"55902",-,-,-,0,TK_NotStart,11/12/2021,,31/12/2021,,"SI20USX2-5 FS","SI20USX2-5","SI20USX2-15 FS","SI20USX2-15",71,,73,,16,,17,,42,2392,"HK1003 -Blackpoint D2 - Rev.0E DD30092021"
1-355,SI20UBX2-25,"CLIENT - REVIEW - DETAIL DESIGN CONCRETE - 20UBX/20UBG03",5121,"HK1003-Rev.0E-3",TT_Task,"55902",-,-,-,0,TK_NotStart,04/11/2021,,28/11/2021,,"SI--UBA2-69 FS,SI20UBA2-50 FS,SI20UBX2-20 FS,SI--UBX2-50 FS","SI--UBA2-69,SI20UBA2-50,SI20UBX2-20,SI--UBX2-50","SI20UBX2-30 FS","SI20UBX2-30",65,,69,,15,,16,,37,1400,"HK1003 -Blackpoint D2 - Rev.0E DD30092021"
1-356,SI--UBA2-65,"BASIC BUILDING DESIGN INCL. 3D MODEL UBA7xxx",5121,"HK1003-Rev.0E-3",TT_Task,"55902",-,-,-,100,TK_Complete,16/04/2021,16/04/2021,28/05/2021,28/05/2021,"SI--UBA2E60 FF,SI--UB-2-35 FS,SI20UBA2B03 FS","SI--UBA2E60,SI--UB-2-35,SI20UBA2B03","SI--UBA2-69 FS","SI--UBA2-69",36,36,42,42,8,8,10,10,8,,"HK1003 -Blackpoint D2 - Rev.0E DD30092021"
1-357,SI20UTG2-10,"BASIC BUILDING DESIGN INCL. 3D MODEL 20UTG01",5121,"HK1003-Rev.0E-3",TT_Task,"55902",-,-,-,100,TK_Complete,16/08/2021,16/08/2021,05/09/2021,05/09/2021,"SI20UTG2-5 FS,SI20UMC2B20 SS","SI20UTG2-5,SI20UMC2B20","SI20UTG2-15 FS,SI20UTG2-50 SS,SI20UTG2-74 SS,SI20UTG2-82 SS","SI20UTG2-15,SI20UTG2-50,SI20UTG2-74,SI20UTG2-82",54,54,57,57,12,12,13,13,26,,"HK1003 -Blackpoint D2 - Rev.0E DD30092021"
1-358,SI--UMX2-77,"BASIC BUILDING DESIGN INCL. 3D MODEL UMX",5121,"HK1003-Rev.0E-3",TT_Task,"55902",-,-,-,100,TK_Complete,30/06/2021,30/06/2021,26/07/2021,26/07/2021,"SI--UMX2-60 FS","SI--UMX2-60","SI--UMX2-70 FS","SI--UMX2-70",47,47,51,51,11,11,11,11,19,,"HK1003 -Blackpoint D2 - Rev.0E DD30092021"
1-359,SI20UBN2-10,"BASIC BUILDING DESIGN INCL. 3D MODEL 20UBN",5121,"HK1003-Rev.0E-3",TT_Task,"55902",-,-,-,0,TK_NotStart,13/10/2021,,02/11/2021,,"SI20UBN2-5 FS","SI20UBN2-5","SI20UBN2-15 FS","SI20UBN2-15",62,,65,,14,,15,,33,2120,"HK1003 -Blackpoint D2 - Rev.0E DD30092021"
1-360,SI20UBX2-15,"BASIC BUILDING DESIGN INCL. 3D MODEL 20UBX/20UBG03",5121,"HK1003-Rev.0E-3",TT_Task,"55902",-,-,-,100,TK_Complete,30/08/2021,30/08/2021,19/09/2021,19/09/2021,"SI20UBX2-10 FF,SI--UB-2-35 FS,SI20UBX2-10 FS","SI20UBX2-10,SI--UB-2-35,SI20UBX2-10","SI20UBX2-20 FS,SI20UBX2-20 FF","SI20UBX2-20,SI20UBX2-20",56,56,59,59,13,13,13,13,27,,"HK1003 -Blackpoint D2 - Rev.0E DD30092021"
1-361,SI20UEN2-71,"BASIC BUILDING DESIGN INCL. 3D MODEL 20UEN",5121,"HK1003-Rev.0E-3",TT_Task,"55902",-,-,-,100,TK_Complete,12/07/2021,12/07/2021,01/08/2021,01/08/2021,"SI--UEN2-60 FS","SI--UEN2-60","SI20UEN2-70 FS,SI-P222-62 SS","SI20UEN2-70,SI-P222-62",49,49,52,52,11,11,12,12,21,,"HK1003 -Blackpoint D2 - Rev.0E DD30092021"
1-362,SI--UBA2-81,"BASIC BUILDING DESIGN INCL. 3D MODEL UBA7910/7920",5121,"HK1003-Rev.0E-3",TT_Task,"55902",-,-,-,100,TK_Complete,20/05/2021,20/05/2021,23/06/2021,23/06/2021,"SI--UBA2-60 FS,SI--UBF2-78 SS,SI--UB-2-35 FS,SI--UBA2-60 FF","SI--UBA2-60,SI--UBF2-78,SI--UB-2-35,SI--UBA2-60","SI--BZP2-30 SS,SI--UBA2-70 FS,SI20UBA2-10 SS,SI20UBA2C77 SS,SI20UBA2C-15 SS","SI--BZP2-30,SI--UBA2-70,SI20UBA2-10,SI20UBA2C77,SI20UBA2C-15",41,41,46,46,9,9,10,10,13,,"HK1003 -Blackpoint D2 - Rev.0E DD30092021"
1-363,SI--UBA2B97,"HANDRAILS AND GRATING DWGS & CONNECTION FORCE REPORT UBA7xxx",5121,"HK1003-Rev.0E-3",TT_Task,"55902",-,-,-,0,TK_NotStart,30/03/2022,,19/04/2022,,"SI--UBA2B70 FF","SI--UBA2B70","SI--UBA2D75 FS","SI--UBA2D75",86,,89,,20,,20,,54,592,"HK1003 -Blackpoint D2 - Rev.0E DD30092021"
1-364,SI20UBX2-60,"HANDRAILS AND GRATING DWGS & CONNECTION FORCE REPORT 20UBX",5121,"HK1003-Rev.0E-3",TT_Task,"55902",-,-,-,0,TK_NotStart,15/11/2021,,05/12/2021,,"SI20UBX2-55 FF","SI20UBX2-55","SI20UBX2-75 FS,SI--UBA2-89 FS","SI20UBX2-75,SI--UBA2-89",67,,70,,15,,16,,38,792,"HK1003 -Blackpoint D2 - Rev.0E DD30092021"
1-365,SI--UMC2B78,"HANDRAILS AND GRATING DWGS & CONNECTION FORCE REPORT 20UMC",5121,"HK1003-Rev.0E-3",TT_Task,"55902",-,-,-,100,TK_Complete,26/04/2021,26/04/2021,16/05/2021,16/05/2021,"SI--UMC2B45 FS","SI--UMC2B45","SI--UMC2B70 FF,SI--UMC2B93 FS","SI--UMC2B70,SI--UMC2B93",38,38,41,41,8,8,9,9,10,,"HK1003 -Blackpoint D2 - Rev.0E DD30092021"
1-366,SI--UMC2B71,"CLIENT - REVIEW - DETAIL DESIGN - STEEL STRUCTURE 20UMC",5121,"HK1003-Rev.0E-3",TT_Task,"55902",-,-,-,100,TK_Complete,17/05/2021,17/05/2021,10/06/2021,10/06/2021,"SI--UMC2B70 FS","SI--UMC2B70","SI--UMC2B75 FS,SI--UMC2B79 SS","SI--UMC2B75,SI--UMC2B79",41,41,44,44,9,9,10,10,13,,"HK1003 -Blackpoint D2 - Rev.0E DD30092021"
1-367,SI--UBF2-71,"CLIENT - REVIEW - DETAIL DESIGN CONCRETE - 20UBE/UBF",5121,"HK1003-Rev.0E-3",TT_Task,"55902",-,-,-,100,TK_Complete,10/08/2021,10/08/2021,03/09/2021,03/09/2021,"SI--UBF2-70 FS,SI--UBF2B70 FS","SI--UBF2-70,SI--UBF2B70","SI--UBF2A75 FS,SI--UBF2-80 SS","SI--UBF2A75,SI--UBF2-80",53,53,56,56,12,12,13,13,25,,"HK1003 -Blackpoint D2 - Rev.0E DD30092021"
1-368,SI--UBF2-79,"(DF) TRANSFORMER YARD DWGS AVAILABLE BAT/BBT",5121,"HK1003-Rev.0E-3",TT_FinMile,"55902",-,-,-,100,TK_Complete,25/03/2021,25/03/2021,25/03/2021,25/03/2021,"SI--UBF2-78 FS","SI--UBF2-78","SI--UBF2-70 FS","SI--UBF2-70",33,33,33,33,7,7,7,7,6,,"HK1003 -Blackpoint D2 - Rev.0E DD30092021"
1-369,SI--UBF2-78,"PREPARATION TRANSFORMER YARD DWGS BAT/BBT",5121,"HK1003-Rev.0E-3",TT_Task,"55902",-,-,-,100,TK_Complete,26/02/2021,26/02/2021,25/03/2021,25/03/2021,"SI20BAT2-15 FS","SI20BAT2-15","SI20UBF3D25 FS,SI--UBA2-81 SS,SI--UBF2-79 FS,SI--UBF2-70 FS","SI20UBF3D25,SI--UBA2-81,SI--UBF2-79,SI--UBF2-70",29,29,33,33,6,6,7,7,5,,"HK1003 -Blackpoint D2 - Rev.0E DD30092021"
1-370,SI--UBF2-77,"BASIC DESIGN / BASIC BUILDING DESIGN INCL. 3D MODEL 20UBE/UBF",5121,"HK1003-Rev.0E-3",TT_Task,"55902",-,-,-,100,TK_Complete,06/06/2021,06/06/2021,21/06/2021,21/06/2021,"SI--UBF2-60 FS,SI--UB-2-35 FS","SI--UBF2-60,SI--UB-2-35","SI--UBF2-70 FS,SI--BZP2-93 FS","SI--UBF2-70,SI--BZP2-93",44,44,46,46,10,10,10,10,16,,"HK1003 -Blackpoint D2 - Rev.0E DD30092021"
1-371,SI--UHA2-78,"BASIC DESIGN / BASIC BUILDING DESIGN INCL. 3D MODEL UHA",5121,"HK1003-Rev.0E-3",TT_Task,"55902",-,-,-,100,TK_Complete,10/05/2021,10/05/2021,30/05/2021,30/05/2021,"SI--UHA2-40 FS,SI--UM-2-35 FS,SI--UHA2-60 FS","SI--UHA2-40,SI--UM-2-35,SI--UHA2-60","SI--UHA2-70 FS,SI-P222-159 FS","SI--UHA2-70,SI-P222-159",40,40,43,43,9,9,10,10,11,,"HK1003 -Blackpoint D2 - Rev.0E DD30092021"
1-372,SI--UMC2A75,"(F) CONCRETE STRUC. DWGS ON SITE, RELEASED FOR EXECUTION TS FOUND 20UMC",5121,"HK1003-Rev.0E-3",TT_FinMile,"55902",-,-,-,100,TK_Complete,25/08/2021,25/08/2021,25/08/2021,25/08/2021,"SI--UMC2A71 FS,SI20UMC2B71 FS","SI--UMC2A71,SI20UMC2B71","SI20UMC5A10 FS","SI20UMC5A10",55,55,55,55,12,12,12,12,27,,"HK1003 -Blackpoint D2 - Rev.0E DD30092021"
1-373,SI--UMC2A71,"CLIENT - REVIEW - TURBOSET DETAIL DESIGN CONCRETE 20UMC",5121,"HK1003-Rev.0E-3",TT_Task,"55902",-,-,-,100,TK_Complete,22/04/2021,22/04/2021,16/05/2021,16/05/2021,"SI--UMC2A50 FS,SI--UMC2A70 FS","SI--UMC2A50,SI--UMC2A70","SI--UMC2A75 FS,SI--UMC2A77 FS","SI--UMC2A75,SI--UMC2A77",37,37,41,41,8,8,9,9,9,,"HK1003 -Blackpoint D2 - Rev.0E DD30092021"
1-374,SI--5552-25,"KICK OFF MEETING MAIN CIVIL WORKS",5121,"HK1003-Rev.0E-3",TT_Mile,"55902",-,-,-,100,TK_Complete,28/05/2021,28/05/2021,28/05/2021,28/05/2021,"SI--5552-24 FS","SI--5552-24","SI20UBA3B25 SS,SI20UBX3C25 FS,SI20UMC3B25 FS","SI20UBA3B25,SI20UBX3C25,SI20UMC3B25",42,42,42,42,10,10,10,10,14,,"HK1003 -Blackpoint D2 - Rev.0E DD30092021"
1-375,SI--5552-24,"PREPARATION KICK OFF MAIN CIVIL WORKS",5121,"HK1003-Rev.0E-3",TT_Task,"55902",-,-,-,100,TK_Complete,14/05/2021,14/05/2021,27/05/2021,27/05/2021,"SI--5552-85 FS,SI20TPC1A2-5 FS,SI20TPC2A2-5 FS,SI20TPC3A2-5 FS,SI20TPC4A2-5 FS,SI20TPC5A2-5 FS,SI20TPC6A2-5 FS,SI20TPC7A2-5 FS,SI20TPC8A2-5 FS,SI20TPC9A2-5 FS,SI20TPC10A2-5 FS","SI--5552-85,SI20TPC1A2-5,SI20TPC2A2-5,SI20TPC3A2-5,SI20TPC4A2-5,SI20TPC5A2-5,SI20TPC6A2-5,SI20TPC7A2-5,SI20TPC8A2-5,SI20TPC9A2-5,SI20TPC10A2-5","SI--5552-25 FS","SI--5552-25",40,40,42,42,9,9,9,9,12,,"HK1003 -Blackpoint D2 - Rev.0E DD30092021"
1-376,SI--5552-13,"EVALUATION/NEGOTIATION MAIN CIVIL WORKS",5121,"HK1003-Rev.0E-3",TT_Task,"55902",-,-,-,100,TK_Complete,09/04/2021,09/04/2021,13/05/2021,13/05/2021,"SI--5552-81 FF","SI--5552-81","SI--5552-10# FF,SI--5552-85 FS,SI-P222-164 SS","SI--5552-10#,SI--5552-85,SI-P222-164",35,35,40,40,8,8,9,9,7,,"HK1003 -Blackpoint D2 - Rev.0E DD30092021"
1-377,SI--UHA2-40,"(MS2) DESIGN LOAD DATA, DIMENSIONS AVAILABLE (UHA,UVM01,UEY01,UMX,UMY,UHW,UHX,UBA11,ULA)",5121,"HK1003-Rev.0E-3",TT_Mile,"55902",-,-,-,100,TK_Complete,15/01/2021,15/01/2021,15/01/2021,15/01/2021,"SI--HB-2A40 FS,SI--UM-2-40 SS,SI-----1-05 FS","SI--HB-2A40,SI--UM-2-40,SI-----1-05","SI--UHA2-78 FS,SI--U--2-16 FS","SI--UHA2-78,SI--U--2-16",23,23,23,23,5,5,5,5,1,,"HK1003 -Blackpoint D2 - Rev.0E DD30092021"
1-378,SI--UM-2-35,"(C) BASIC DESIGN PLANT LAYOUT DWGS AVAILABLE  (UMC,UPY,UTG01/05,UHA,UVM01,UEY01,UMX,UMY,UHW,UHX,UBA11,ULA,ULY01)",5121,"HK1003-Rev.0E-3",TT_FinMile,"55902",-,-,-,100,TK_Complete,07/04/2021,07/04/2021,07/04/2021,07/04/2021,"SI--U--2-16 FS","SI--U--2-16","SI--PM-2-30 FS,SI--SG-2-40 FS,SI--UHA2-78 FS,SI20UVM2-76 FS,SI20UBY2-5 FS,SI20UBY2-41 FS,SI20UZJ2-81 FS,SI--UMY2-77 FS,SI--PEM6-20& FS,SI-P222-147 FS,SI-P222-158 FS,SI-P222-175 FS,SI--UMY2-60 FS,SI20MBA2D86 FS","SI--PM-2-30,SI--SG-2-40,SI--UHA2-78,SI20UVM2-76,SI20UBY2-5,SI20UBY2-41,SI20UZJ2-81,SI--UMY2-77,SI--PEM6-20&,SI-P222-147,SI-P222-158,SI-P222-175,SI--UMY2-60,SI20MBA2D86",35,35,35,35,8,8,8,8,7,,"HK1003 -Blackpoint D2 - Rev.0E DD30092021"
1-379,SI--U--2-16,"BASIC DESIGN PLANT LAYOUT POWER BLOCK AREA (UMC,UPY,UTG01/05,UHA,UVM01,UEY01,UMX,UMY,UHW,UHX,UBA11,ULA,ULY01)",5121,"HK1003-Rev.0E-3",TT_Task,"55902",-,-,-,100,TK_Complete,29/01/2021,29/01/2021,07/04/2021,07/04/2021,"SI--UM-2-40 FS,SI--M--2A20 FS,SI--UHA2-40 FS","SI--UM-2-40,SI--M--2A20,SI--UHA2-40","SI--UM-2-35 FS","SI--UM-2-35",25,25,35,35,6,6,8,8,3,,"HK1003 -Blackpoint D2 - Rev.0E DD30092021"
1-380,SI--UM-2-40,"(MS2) DESIGN LOAD DATA, DIMENSIONS AVAILABLE (UMC,UPY,UTG01,/05)",5121,"HK1003-Rev.0E-3",TT_Mile,"55902",-,-,-,100,TK_Complete,15/01/2021,15/01/2021,15/01/2021,15/01/2021,"SI-----1-05 FS","SI-----1-05","SI--UHA2-40 SS,SI--U--2-16 FS","SI--UHA2-40,SI--U--2-16",23,23,23,23,5,5,5,5,2,,"HK1003 -Blackpoint D2 - Rev.0E DD30092021"
1-381,SI20BZP7-145,"ERECTION CABLE TRAYS FOR 20URA  AREA PART 1",5121,"HK1003-Rev.0E-3",TT_Task,"55902",-,-,-,0,TK_NotStart,24/02/2023,,23/03/2023,,"SI--PEE7-20 FS,SI20PAS6B15 FF,SI--2227-68 FS,SI--BZP2-05 FS,SI--BZP4B40 FS,SI20BZP7-26 FS,SI20UBA7-16 FS,SI--PEE7-20 SS,SI20PAD6-43 SS","SI--PEE7-20,SI20PAS6B15,SI--2227-68,SI--BZP2-05,SI--BZP4B40,SI20BZP7-26,SI20UBA7-16,SI--PEE7-20,SI20PAD6-43","SI20PAD7-33 FS,SI20BZL7E18 FS,SI20BZL7E17 SS,SI20PAD7-35 FS,SI20BZP7B10# FF,SI20BZP7B10# SS,SI20BZP7-155 FS,SI20PAD7-36 FS,SI20BZK7B47 FS","SI20PAD7-33,SI20BZL7E18,SI20BZL7E17,SI20PAD7-35,SI20BZP7B10#,SI20BZP7B10#,SI20BZP7-155,SI20PAD7-36,SI20BZK7B47",133,,137,,31,,32,,91,64,"HK1003 -Blackpoint D2 - Rev.0E DD30092021"
1-382,SI20HA-3E84,"MANUFACTURING VALVES > 2"" HRSG20",5121,"HK1003-Rev.0E-3",TT_Task,"55902",-,-,-,69,TK_Active,28/01/2021,28/01/2021,19/01/2022,,"SI--HA-3E26 SS,SI--HA-2A11 FS,SI--HA-2-85 FS","SI--HA-3E26,SI--HA-2A11,SI--HA-2-85","SI20HA-3B75 FS","SI20HA-3B75",25,25,76,,6,6,17,,3,880,"HK1003 -Blackpoint D2 - Rev.0E DD30092021"
1-383,SI--PAB2-24,"RELEASE BASIC DESIGN TO DETAIL DESIGN CONCRETE DESIGNER / SUPPLIER PAB",5121,"HK1003-Rev.0E-3",TT_Mile,"55902",-,-,-,100,TK_Complete,15/03/2021,15/03/2021,15/03/2021,15/03/2021,"SI--PAB2-23 FS","SI--PAB2-23","SI20PAB3-20 FS,SI--PM-2-60 FS","SI20PAB3-20,SI--PM-2-60",32,32,32,32,7,7,7,7,6,,"HK1003 -Blackpoint D2 - Rev.0E DD30092021"
1-384,SI--PAB2-23,"FINALIZE BASIC DESIGN PAB",5121,"HK1003-Rev.0E-3",TT_Task,"55902",-,-,-,100,TK_Complete,15/02/2021,15/02/2021,14/03/2021,14/03/2021,"SI--PAB2-22 FS,SI--PAB2-16 FS","SI--PAB2-22,SI--PAB2-16","SI--PAB2-24 FS","SI--PAB2-24",28,28,32,32,6,6,7,7,4,,"HK1003 -Blackpoint D2 - Rev.0E DD30092021"
1-385,SI--PAB2-22,"3D MODEL PAB",5121,"HK1003-Rev.0E-3",TT_Task,"55902",-,-,-,100,TK_Complete,02/02/2021,02/02/2021,15/02/2021,15/02/2021,"SI--PAB2-15 SS","SI--PAB2-15","SI--PAB2-23 FS","SI--PAB2-23",26,26,28,28,6,6,6,6,4,,"HK1003 -Blackpoint D2 - Rev.0E DD30092021"
1-386,SI--PAB2-16,"BASIC DESIGN RELEASE PAB",5121,"HK1003-Rev.0E-3",TT_Mile,"55902",-,-,-,100,TK_Complete,09/02/2021,09/02/2021,09/02/2021,09/02/2021,"SI--PAB2-15 FS","SI--PAB2-15","SI--PAB2-23 FS","SI--PAB2-23",27,27,27,27,6,6,6,6,4,,"HK1003 -Blackpoint D2 - Rev.0E DD30092021"
1-387,SI--PAB2-15,"BASIC DESIGN OF PIPING / ROUTING PAB",5121,"HK1003-Rev.0E-3",TT_Task,"55902",-,-,-,100,TK_Complete,15/01/2021,15/01/2021,08/02/2021,08/02/2021,"SI-----1-03 FS,SI-----1-05 FS","SI-----1-03,SI-----1-05","SI--PAB2-16 FS,SI--PAB2-22 SS","SI--PAB2-16,SI--PAB2-22",23,23,27,27,5,5,6,6,2,,"HK1003 -Blackpoint D2 - Rev.0E DD30092021"
1-388,SI--SG-2-27,"RELEASE FIRE FIGHTING RING MAIN - BASIC DESIGN",5121,"HK1003-Rev.0E-3",TT_Mile,"55902",-,-,-,100,TK_Complete,12/05/2021,12/05/2021,12/05/2021,12/05/2021,"SI--SG-2-26 FS","SI--SG-2-26","SI20SGA6A26 FS,SI--SG-2-89 FS,SI20EKG6I15 FS,SI20EKG6H16 FS","SI20SGA6A26,SI--SG-2-89,SI20EKG6I15,SI20EKG6H16",40,40,40,40,9,9,9,9,12,,"HK1003 -Blackpoint D2 - Rev.0E DD30092021"
1-389,SI--SG-2-26,"FINALIZE RING MAIN BASIC DESIGN",5121,"HK1003-Rev.0E-3",TT_Task,"55902",-,-,-,100,TK_Complete,14/04/2021,14/04/2021,11/05/2021,11/05/2021,"SI--SG-2-25 FS","SI--SG-2-25","SI--SG-2-27 FS","SI--SG-2-27",36,36,40,40,8,8,9,9,8,,"HK1003 -Blackpoint D2 - Rev.0E DD30092021"
1-390,SI--SG-2-25,"UPDATE RING MAIN DESIGN",5121,"HK1003-Rev.0E-3",TT_Task,"55902",-,-,-,100,TK_Complete,31/03/2021,31/03/2021,13/04/2021,13/04/2021,"SI--SG-2-23 FS,SI--6662-26 FS,SI--SG-2-94 FS","SI--SG-2-23,SI--6662-26,SI--SG-2-94","SI--SG-2-26 FS","SI--SG-2-26",34,34,36,36,8,8,8,8,7,,"HK1003 -Blackpoint D2 - Rev.0E DD30092021"
1-391,SI--SG-2-23,"MODELLING COMPLETE",5121,"HK1003-Rev.0E-3",TT_Mile,"55902",-,-,-,100,TK_Complete,19/02/2021,19/02/2021,19/02/2021,19/02/2021,"SI--SG-2-22 FS","SI--SG-2-22","SI--SG-2-25 FS,SI--SG-2-94 FS","SI--SG-2-25,SI--SG-2-94",28,28,28,28,6,6,6,6,5,,"HK1003 -Blackpoint D2 - Rev.0E DD30092021"
1-392,SI--SG-2-22,"PLANNING 3D MODELLING OF F/F RING MAIN OUTSIDE BUILDING",5121,"HK1003-Rev.0E-3",TT_Task,"55902",-,-,-,100,TK_Complete,29/01/2021,29/01/2021,18/02/2021,18/02/2021,"SI--SG-2-20 FS,SI--SG-2-21 FS,SI-----1-05 FS","SI--SG-2-20,SI--SG-2-21,SI-----1-05","SI--SG-2-23 FS","SI--SG-2-23",25,25,28,28,6,6,6,6,3,,"HK1003 -Blackpoint D2 - Rev.0E DD30092021"
1-393,SI--SG-2-21,"P&ID, FINALIZE RING MAIN CONCEPT",5121,"HK1003-Rev.0E-3",TT_Task,"55902",-,-,-,100,TK_Complete,15/01/2021,15/01/2021,04/02/2021,04/02/2021,"SI-----1-01 FS,SI-----1-05 FS","SI-----1-01,SI-----1-05","SI--PM-2-30 FS,SI--SG-2-22 FS","SI--PM-2-30,SI--SG-2-22",23,23,26,26,5,5,6,6,2,,"HK1003 -Blackpoint D2 - Rev.0E DD30092021"
1-394,SI20HB-3C91,"MANUFACTURING SECONDARY STEEL STRUCTURE HRSG20_Last Part",5121,"HK1003-Rev.0E-3",TT_Task,"55902",-,-,-,45,TK_Active,16/07/2021,16/07/2021,31/12/2021,,"SI20HB-3C25 SS,SI--HB-3C15 FS,SI--HA-2-85 FS,SI--HB-2-19 FF","SI20HB-3C25,SI--HB-3C15,SI--HA-2-85,SI--HB-2-19","SI20HB-3B72 FS","SI20HB-3B72",49,49,73,,11,11,17,,22,1368,"HK1003 -Blackpoint D2 - Rev.0E DD30092021"
1-395,SI-UZA2-10,"ROAD DESIGN STRUCTURAL & FINAL HYDRAULIC CALCULATIONS",5121,"HK1003-Rev.0E-3",TT_Task,"55902",-,-,-,100,TK_Complete,25/01/2021,25/01/2021,21/02/2021,21/02/2021,"SI-UZA2-5 FS","SI-UZA2-5","SI-UZA2-45 FS","SI-UZA2-45",25,25,29,29,5,5,6,6,3,,"HK1003 -Blackpoint D2 - Rev.0E DD30092021"
1-396,SI20UMY4M10,"LOGISTICS AND CUSTOMS PREPARATION MODULE 20UMY00Y",5121,"HK1003-Rev.0E-3",TT_Task,"55902",-,-,-,0,TK_NotStart,07/02/2022,,06/03/2022,,"SI20UMY3M70 FS","SI20UMY3M70","SI20UMY3M80 FS","SI20UMY3M80",79,,83,,18,,19,,48,216,"HK1003 -Blackpoint D2 - Rev.0E DD30092021"
1-397,SI20UMY3M70,"TIMES OF COMPLETION (FINAL DATA IN KANLOG) MODULE 20UMY00Y",5121,"HK1003-Rev.0E-3",TT_FinMile,"55902",-,-,-,0,TK_NotStart,07/02/2022,,07/02/2022,,"SI20---3M70 FF,SI20UMY3M31# FS,SI20---3B91 FS","SI20---3M70,SI20UMY3M31#,SI20---3B91","SI20UMY4M10 FS","SI20UMY4M10",79,,79,,18,,18,,48,216,"HK1003 -Blackpoint D2 - Rev.0E DD30092021"
1-398,SI20UMY3M80,"(RFS) READY FOR SHIPMENT MODULE 20UMY00Y",5121,"HK1003-Rev.0E-3",TT_FinMile,"55902",-,-,-,0,TK_NotStart,06/03/2022,,06/03/2022,,"SI20UMY4M10 FS","SI20UMY4M10","SI20UMY4M25 FS","SI20UMY4M25",83,,83,,19,,19,,52,216,"HK1003 -Blackpoint D2 - Rev.0E DD30092021"
1-399,SI20LCA4M11,"LOGISTICS AND CUSTOMS PREPARATION MODULE 20LCA50Y",5121,"HK1003-Rev.0E-3",TT_Task,"55902",-,-,-,0,TK_NotStart,04/03/2022,,31/03/2022,,"SI20LCA3M71 FS","SI20LCA3M71","SI20LCA3M81 FS","SI20LCA3M81",82,,86,,19,,20,,51,208,"HK1003 -Blackpoint D2 - Rev.0E DD30092021"
1-400,SI20LCA3M71,"TIMES OF COMPLETION (FINAL DATA IN KANLOG) MODULE 20LCA50Y",5121,"HK1003-Rev.0E-3",TT_FinMile,"55902",-,-,-,0,TK_NotStart,04/03/2022,,04/03/2022,,"SI20---3M71 FS","SI20---3M71","SI20LCA4M11 FS,SI20---3M116 FS","SI20LCA4M11,SI20---3M116",82,,82,,19,,19,,51,208,"HK1003 -Blackpoint D2 - Rev.0E DD30092021"
1-401,SI20LAC4B10,"LOGISTICS AND CUSTOMS PREPARATION FEEDWATER PUMP SKID 20LAC",5121,"HK1003-Rev.0E-3",TT_Task,"55902",-,-,-,0,TK_NotStart,19/03/2022,,15/04/2022,,"SI20LAC3B70 FS","SI20LAC3B70","SI20LAC3B80 FS","SI20LAC3B80",85,,88,,19,,20,,53,240,"HK1003 -Blackpoint D2 - Rev.0E DD30092021"
1-402,SI20LAC3B70,"TIMES OF COMPLETION (FINAL DATA IN KANLOG) FEEDWATER PUMP SKID 20LAC",5121,"HK1003-Rev.0E-3",TT_FinMile,"55902",-,-,-,0,TK_NotStart,18/03/2022,,18/03/2022,,"SI20LAC3B30 FS","SI20LAC3B30","SI20LAC4B10 FS","SI20LAC4B10",84,,84,,19,,19,,53,240,"HK1003 -Blackpoint D2 - Rev.0E DD30092021"
1-403,SI20LAC4M10,"LOGISTICS AND CUSTOMS PREPARATION MODULE 20LAC10Y (w/o Pump)",5121,"HK1003-Rev.0E-3",TT_Task,"55902",-,-,-,0,TK_NotStart,24/03/2022,,20/04/2022,,"SI20LAC3M70 FS","SI20LAC3M70","SI20LAC3M80 FS","SI20LAC3M80",85,,89,,20,,20,,53,240,"HK1003 -Blackpoint D2 - Rev.0E DD30092021"
1-404,SI20LAC3M70,"TIMES OF COMPLETION (FINAL DATA IN KANLOG) MODULE 20LAC10Y (w/o Pump)",5121,"HK1003-Rev.0E-3",TT_FinMile,"55902",-,-,-,0,TK_NotStart,24/03/2022,,24/03/2022,,"SI20---3B92 FS,SI20---3M71 FS","SI20---3B92,SI20---3M71","SI20LAC4M10 FS","SI20LAC4M10",85,,85,,20,,20,,53,240,"HK1003 -Blackpoint D2 - Rev.0E DD30092021"
1-405,SI20LAC3M80,"(RFS) READY FOR SHIPMENT FOR MODULE 20LAC10Y (w/o Pump)",5121,"HK1003-Rev.0E-3",TT_FinMile,"55902",-,-,-,0,TK_NotStart,20/04/2022,,20/04/2022,,"SI20LAC4M10 FS","SI20LAC4M10","SI20LAC4M25 FS","SI20LAC4M25",89,,89,,20,,20,,58,240,"HK1003 -Blackpoint D2 - Rev.0E DD30092021"
1-406,SI20HA-4B15,"LOGISTICS AND CUSTOMS PREPARATION VALVES > 2"" HRSG20",5121,"HK1003-Rev.0E-3",TT_Task,"55902",-,-,-,0,TK_NotStart,20/01/2022,,16/02/2022,,"SI20HA-3B75 FS","SI20HA-3B75","SI20HA-3C80 FS","SI20HA-3C80",76,,80,,17,,18,,46,880,"HK1003 -Blackpoint D2 - Rev.0E DD30092021"
1-407,SI20HA-3B75,"TIMES OF COMPLETION (FINAL DATA IN KANLOG) VALVES > 2"" HRSG20",5121,"HK1003-Rev.0E-3",TT_FinMile,"55902",-,-,-,0,TK_NotStart,19/01/2022,,19/01/2022,,"SI20HA-3E84 FS","SI20HA-3E84","SI20HA-4B15 FS","SI20HA-4B15",76,,76,,17,,17,,46,880,"HK1003 -Blackpoint D2 - Rev.0E DD30092021"
1-408,SI20HA-4B12,"LOGISTICS AND CUSTOMS PREPARATION  PIPING HRSG20_1st Part (LB CARBON STEEL)",5121,"HK1003-Rev.0E-3",TT_Task,"55902",-,-,-,0,TK_NotStart,31/12/2021,,27/01/2022,,"SI20HA-3B72 FS","SI20HA-3B72","SI20HA-3B80 FS","SI20HA-3B80",73,,77,,17,,18,,43,544,"HK1003 -Blackpoint D2 - Rev.0E DD30092021"
1-409,SI20HA-3B72,"TIMES OF COMPLETION (FINAL DATA IN KANLOG) PIPING HRSG20_1st Part (LB CARBON STEEL)",5121,"HK1003-Rev.0E-3",TT_FinMile,"55902",-,-,-,0,TK_NotStart,30/12/2021,,30/12/2021,,"SI--HA-3E26 FS","SI--HA-3E26","SI20HA-4B12 FS","SI20HA-4B12",73,,73,,17,,17,,43,544,"HK1003 -Blackpoint D2 - Rev.0E DD30092021"
1-410,SI20UBA4B11,"LOGISTICS AND CUSTOMS PREPARATION ELECTRICAL MODULES 20UBA7110/20/30  (TO SITE)",5121,"HK1003-Rev.0E-3",TT_Task,"55902",-,-,-,0,TK_NotStart,31/03/2022,,27/04/2022,,"SI20UBA3B71 FS","SI20UBA3B71","SI20UBA4B10 SS,SI20UBA3G80 FS,SI20UBA3G20# FF","SI20UBA4B10,SI20UBA3G80,SI20UBA3G20#",86,,90,,20,,21,,54,688,"HK1003 -Blackpoint D2 - Rev.0E DD30092021"
1-411,SI20UBA3B71,"TIMES OF COMPLETION (FINAL DATA IN KANLOG) ELECTRICAL MODULES 20UBA7110/20/30",5121,"HK1003-Rev.0E-3",TT_FinMile,"55902",-,-,-,0,TK_NotStart,31/03/2022,,31/03/2022,,"SI20UBA3E57 FS","SI20UBA3E57","SI20UBA4B11 FS","SI20UBA4B11",86,,86,,20,,20,,54,688,"HK1003 -Blackpoint D2 - Rev.0E DD30092021"
1-412,SI20UMC4M11,"LOGISTICS AND CUSTOMS PREPARATION MODULE PxB 20UMCL1Y",5121,"HK1003-Rev.0E-3",TT_Task,"55902",-,-,-,0,TK_NotStart,04/03/2022,,31/03/2022,,"SI20UMC3M71 FS","SI20UMC3M71","SI20UMC3M81 FS","SI20UMC3M81",82,,86,,19,,20,,51,1072,"HK1003 -Blackpoint D2 - Rev.0E DD30092021"
1-413,SI20UMC3M71,"TIMES OF COMPLETION (FINAL DATA IN KANLOG) MODULE PxB 20UMCL1Y",5121,"HK1003-Rev.0E-3",TT_FinMile,"55902",-,-,-,0,TK_NotStart,04/03/2022,,04/03/2022,,"SI20---3M71 FS","SI20---3M71","SI20UMC4M11 FS,SI20---3M112 FS","SI20UMC4M11,SI20---3M112",82,,82,,19,,19,,51,1072,"HK1003 -Blackpoint D2 - Rev.0E DD30092021"
1-414,SI20UMC3M81,"(RFS) READY FOR SHIPMENT MODULE PxB 20UMCL1Y",5121,"HK1003-Rev.0E-3",TT_FinMile,"55902",-,-,-,0,TK_NotStart,31/03/2022,,31/03/2022,,"SI20UMC4M11 FS","SI20UMC4M11","SI20UMC4M26 FS","SI20UMC4M26",86,,86,,20,,20,,54,1072,"HK1003 -Blackpoint D2 - Rev.0E DD30092021"
1-415,SI20UMC4M10,"LOGISTICS AND CUSTOMS PREPARATION MODULE 20UMCM1Y",5121,"HK1003-Rev.0E-3",TT_Task,"55902",-,-,-,0,TK_NotStart,04/03/2022,,31/03/2022,,"SI20UMC3M70 FS","SI20UMC3M70","SI20UMC3M80 FS","SI20UMC3M80",82,,86,,19,,20,,51,248,"HK1003 -Blackpoint D2 - Rev.0E DD30092021"
1-416,SI20UMC3M70,"TIMES OF COMPLETION (FINAL DATA IN KANLOG) MODULE 20UMCM1Y",5121,"HK1003-Rev.0E-3",TT_FinMile,"55902",-,-,-,0,TK_NotStart,04/03/2022,,04/03/2022,,"SI20---3M70 FF,SI20---3M71 FS","SI20---3M70,SI20---3M71","SI20UMC4M10 FS,SI20---3M111 FS","SI20UMC4M10,SI20---3M111",82,,82,,19,,19,,51,248,"HK1003 -Blackpoint D2 - Rev.0E DD30092021"
1-417,SI20MAW4M11,"LOGISTICS AND CUSTOMS PREPARATION MODULE 20MAW50Y",5121,"HK1003-Rev.0E-3",TT_Task,"55902",-,-,-,0,TK_NotStart,03/02/2022,,02/03/2022,,"SI20MAW3M71 FS","SI20MAW3M71","SI20MAW3M81 FS","SI20MAW3M81",78,,82,,18,,19,,47,744,"HK1003 -Blackpoint D2 - Rev.0E DD30092021"
1-418,SI20MAW3M71,"TIMES OF COMPLETION (FINAL DATA IN KANLOG) MODULE 20MAW50Y",5121,"HK1003-Rev.0E-3",TT_FinMile,"55902",-,-,-,0,TK_NotStart,03/02/2022,,03/02/2022,,"SI20---3M70 FF","SI20---3M70","SI20MAW4M11 FS,SI20---3M110 FS","SI20MAW4M11,SI20---3M110",78,,78,,18,,18,,47,744,"HK1003 -Blackpoint D2 - Rev.0E DD30092021"
1-419,SI20UMC3M80,"(RFS) READY FOR SHIPMENT MODULE 20UMCM1Y",5121,"HK1003-Rev.0E-3",TT_FinMile,"55902",-,-,-,0,TK_NotStart,08/04/2022,,08/04/2022,,"SI20UMC4M10 FS","SI20UMC4M10","SI20UMC4M25 FS","SI20UMC4M25",87,,87,,20,,20,,56,184,"HK1003 -Blackpoint D2 - Rev.0E DD30092021"
1-420,SI20MBL4-25,"TRANSPORT AIR INTAKE SYSTEM AIR INTAKE SYSTEM 20MBL",5121,"HK1003-Rev.0E-3",TT_Task,"55902",-,-,-,0,TK_NotStart,19/05/2022,,13/07/2022,,"SP20MBL3B80 FS","SP20MBL3B80","SI20MBL6-26 FS,SI20MBL6-06 FS","SI20MBL6-26,SI20MBL6-06",93,,101,,21,,23,,65,184,"HK1003 -Blackpoint D2 - Rev.0E DD30092021"
1-421,SI20MBL6-06,"PRE-ASSEMBLY GT AIR INTAKE MBL LOWER PART & INNER CONE BEFORE GT 20",5121,"HK1003-Rev.0E-3",TT_Task,"55902",-,-,-,0,TK_NotStart,14/07/2022,,31/07/2022,,"SI20MBL4-25 FS","SI20MBL4-25","SI20MB-6-10 FS,SI20MBL6-05 FS,SI20MBL6-26 FS","SI20MB-6-10,SI20MBL6-05,SI20MBL6-26",101,,104,,23,,24,,73,184,"HK1003 -Blackpoint D2 - Rev.0E DD30092021"
1-422,SP20MAG3D70,"TIMES OF COMPLETION (FINAL DATA IN KANLOG) CONDENSER FOUNDATION PARTS",5121,"HK1003-Rev.0E-3",TT_Mile,"55902",-,-,-,100,TK_Complete,10/06/2021,10/06/2021,10/06/2021,10/06/2021,"SP20MAG3-25 SS","SP20MAG3-25","SP20MAG4-10 FS","SP20MAG4-10",44,44,44,44,10,10,10,10,16,,"HK1003 -Blackpoint D2 - Rev.0E DD30092021"
1-423,SI20LAC6B18,"LIGHTING AND SMALL POWER INSIDE NOISE ENCLOSURE FEEDWATER PUMPS 20LAC",5121,"HK1003-Rev.0E-3",TT_Task,"55902",-,-,-,0,TK_NotStart,01/09/2022,,21/09/2022,,"SI--BZL2-05 FS,SI20LAC6B16 SS,SI--BZL4-40 FS","SI--BZL2-05,SI20LAC6B16,SI--BZL4-40","SI20LAC8B10 FS,SI20BZL7-16# FF,SI20BZL7-16# SS,SI20BZK7F29 FS","SI20LAC8B10,SI20BZL7-16#,SI20BZL7-16#,SI20BZK7F29",108,,111,,25,,26,,80,1752,"HK1003 -Blackpoint D2 - Rev.0E DD30092021"
1-424,SI20BZP7-60,"ERECTION CABLE TRAYS BELOW ELECTRICAL MODULES 20UBA1110/20",5121,"HK1003-Rev.0E-3",TT_Task,"55902",-,-,-,0,TK_NotStart,15/10/2022,,28/10/2022,,"SI--PEE7-20 FS,SI--2227-68 FS,SI--BZP2-05 FS,SI--BZP4B40 FS,SI20BZP7-26 FS,SI--PEE7-20 SS,SI20UBA5-55 FS,SI20UBA5-103 FS,SI20BZP7-100 FS","SI--PEE7-20,SI--2227-68,SI--BZP2-05,SI--BZP4B40,SI20BZP7-26,SI--PEE7-20,SI20UBA5-55,SI20UBA5-103,SI20BZP7-100","SI20UBA7L15 SS,SI20UBA7C-31 FS,SI20UBA5-82 FS,SI20BZP7B10# FF,SI20BZP7B10# SS,SI20BZK7-187 FS,SI20BZK7-190 FS","SI20UBA7L15,SI20UBA7C-31,SI20UBA5-82,SI20BZP7B10#,SI20BZP7B10#,SI20BZK7-187,SI20BZK7-190",115,,116,,26,,27,,83,320,"HK1003 -Blackpoint D2 - Rev.0E DD30092021"
1-425,SI20LDK6B17,"ELECTRICAL ERECTION CONDENSATE POLISHING PLANT 20LD",5121,"HK1003-Rev.0E-3",TT_Task,"55902",-,-,-,0,TK_NotStart,20/10/2022,,02/11/2022,,"SI20LDK6B16 FF","SI20LDK6B16","SI20LDK6B55 FS,SI20BZK7D11# FF,SI20BZK7D11# SS,SI20LDK8B10 FS,SI20LD8B110 FS","SI20LDK6B55,SI20BZK7D11#,SI20BZK7D11#,SI20LDK8B10,SI20LD8B110",115,,117,,27,,27,,83,1080,"HK1003 -Blackpoint D2 - Rev.0E DD30092021"
1-426,SI20BZL8B26,"COMMISSIONING HIGH BAY LIGHTING INSIDE 20UMC",5121,"HK1003-Rev.0E-3",TT_Task,"55902",-,-,-,0,TK_NotStart,11/04/2023,,17/04/2023,,"SI20BZL8-10 FS,SI20BFA8-35 SS,SI-PM-40 FS","SI20BZL8-10,SI20BFA8-35,SI-PM-40","SI20BZL8B25 FS,SI20BZL8B27 FS","SI20BZL8B25,SI20BZL8B27",140,,141,,32,,32,,94,424,"HK1003 -Blackpoint D2 - Rev.0E DD30092021"
1-427,SI20HB-6E29,"ERECTION INLET DUCT HRSG20",5121,"HK1003-Rev.0E-3",TT_Task,"55902",-,-,-,0,TK_NotStart,06/05/2022,,26/05/2022,,"SI20HB-6-18 FS,SI20HA-6D18 FS,SI20HB-4E40 FS","SI20HB-6-18,SI20HA-6D18,SI20HB-4E40","SI20HB-6E27 FS,SI20HB-6E33 SS","SI20HB-6E27,SI20HB-6E33",91,,94,,21,,22,,63,216,"HK1003 -Blackpoint D2 - Rev.0E DD30092021"
1-428,SI-UZA2-5,"CONCEPT COMPOSITE DRAWING RING ROAD INCL. UNDERGROUND (U/G) DRAINAGE",5121,"HK1003-Rev.0E-3",TT_Task,"55902",-,-,-,100,TK_Complete,15/01/2021,15/01/2021,28/01/2021,28/01/2021,"SI-----1-05 FS","SI-----1-05","SI-UZA2-10 FS","SI-UZA2-10",23,23,25,25,5,5,6,6,2,,"HK1003 -Blackpoint D2 - Rev.0E DD30092021"
1-429,SI20CJF4B10,"LOGISTICS AND CUSTOMS PREPARATION ELECTRICAL / I&C EQUIPMENT HRSG20",5121,"HK1003-Rev.0E-3",TT_Task,"55902",-,-,-,0,TK_NotStart,22/03/2022,,18/04/2022,,"SI20CJF3B70 FS","SI20CJF3B70","SI20CJF3-80 FS","SI20CJF3-80",85,,89,,19,,20,,53,856,"HK1003 -Blackpoint D2 - Rev.0E DD30092021"
1-430,SI20CJF3B70,"TIMES OF COMPLETION (FINAL DATA IN KANLOG) ELECTRICAL / I&C EQUIPMENT HRSG20",5121,"HK1003-Rev.0E-3",TT_FinMile,"55902",-,-,-,0,TK_NotStart,21/03/2022,,21/03/2022,,"SI20CJF3-25 FS","SI20CJF3-25","SI20CJF4B10 FS","SI20CJF4B10",85,,85,,19,,19,,53,856,"HK1003 -Blackpoint D2 - Rev.0E DD30092021"
1-431,SI20HA-4B11,"LOGISTICS AND CUSTOMS PREPARATION DRUMS HRSG20",5121,"HK1003-Rev.0E-3",TT_Task,"55902",-,-,-,0,TK_NotStart,11/01/2022,,07/02/2022,,"SI20HA-3B71 FS","SI20HA-3B71","SI20HA-3D80 FS","SI20HA-3D80",75,,79,,17,,18,,45,384,"HK1003 -Blackpoint D2 - Rev.0E DD30092021"
1-432,SI20HA-3B71,"TIMES OF COMPLETION (FINAL DATA IN KANLOG) DRUMS HRSG20",5121,"HK1003-Rev.0E-3",TT_FinMile,"55902",-,-,-,0,TK_NotStart,10/01/2022,,10/01/2022,,"SI20HA-3D26 FS","SI20HA-3D26","SI20HA-4B11 FS","SI20HA-4B11",75,,75,,17,,17,,44,384,"HK1003 -Blackpoint D2 - Rev.0E DD30092021"
1-433,SI20HA-4B10,"LOGISTICS AND CUSTOMS PREPARATION HEATING SURFACES HRSG20",5121,"HK1003-Rev.0E-3",TT_Task,"55902",-,-,-,0,TK_NotStart,21/02/2022,,15/03/2022,,"SI20HA-3B70 FS","SI20HA-3B70","SI20HA-3G80 FS","SI20HA-3G80",81,,84,,18,,19,,50,0,"HK1003 -Blackpoint D2 - Rev.0E DD30092021"
1-434,SI20HA-3B70,"TIMES OF COMPLETION (FINAL DATA IN KANLOG) HEATING SURFACES HRSG20",5121,"HK1003-Rev.0E-3",TT_FinMile,"55902",-,-,-,0,TK_NotStart,20/02/2022,,20/02/2022,,"SI20HA-3C25 FS","SI20HA-3C25","SI20HA-4B10 FS","SI20HA-4B10",81,,81,,18,,18,,50,0,"HK1003 -Blackpoint D2 - Rev.0E DD30092021"
1-435,SI20HB-4B13,"LOGISTICS AND CUSTOMS PREPARATION OUTLET DUCT HRSG 20",5121,"HK1003-Rev.0E-3",TT_Task,"55902",-,-,-,0,TK_NotStart,11/01/2022,,07/02/2022,,"SI20HB-3B73 FS","SI20HB-3B73","SI20HB-3F80 FS","SI20HB-3F80",75,,79,,17,,18,,45,3000,"HK1003 -Blackpoint D2 - Rev.0E DD30092021"
1-436,SI20HB-3B73,"TIMES OF COMPLETION (FINAL DATA IN KANLOG) OUTLET DUCT HRSG 20",5121,"HK1003-Rev.0E-3",TT_FinMile,"55902",-,-,-,0,TK_NotStart,10/01/2022,,10/01/2022,,"SI20HB-3F26 FS","SI20HB-3F26","SI20HB-4B13 FS","SI20HB-4B13",75,,75,,17,,17,,44,3000,"HK1003 -Blackpoint D2 - Rev.0E DD30092021"
1-437,SI20HB-4B14,"LOGISTICS AND CUSTOMS PREPARATION STACK HRSG 20",5121,"HK1003-Rev.0E-3",TT_Task,"55902",-,-,-,0,TK_NotStart,11/01/2022,,07/02/2022,,"SI20HB-3B74 FS","SI20HB-3B74","SI20HB-3D80 FS","SI20HB-3D80",75,,79,,17,,18,,45,376,"HK1003 -Blackpoint D2 - Rev.0E DD30092021"
1-438,SI20HB-3B74,"TIMES OF COMPLETION (FINAL DATA IN KANLOG) STACK HRSG 20",5121,"HK1003-Rev.0E-3",TT_FinMile,"55902",-,-,-,0,TK_NotStart,10/01/2022,,10/01/2022,,"SI20HB-3D26 FS","SI20HB-3D26","SI20HB-4B14 FS","SI20HB-4B14",75,,75,,17,,17,,44,376,"HK1003 -Blackpoint D2 - Rev.0E DD30092021"
1-439,SI20HB-4B15,"LOGISTICS AND CUSTOMS PREPARATION INLET DUCT HRSG20",5121,"HK1003-Rev.0E-3",TT_Task,"55902",-,-,-,0,TK_NotStart,06/12/2021,,02/01/2022,,"SI20HB-3B75 FS","SI20HB-3B75","SI20HB-3E80 FS","SI20HB-3E80",70,,74,,16,,17,,40,920,"HK1003 -Blackpoint D2 - Rev.0E DD30092021"
1-440,SI20HB-3B75,"TIMES OF COMPLETION (FINAL DATA IN KANLOG) INLET DUCT HRSG20",5121,"HK1003-Rev.0E-3",TT_FinMile,"55902",-,-,-,0,TK_NotStart,05/12/2021,,05/12/2021,,"SI20HB-3E26 FS","SI20HB-3E26","SI20HB-4B15 FS","SI20HB-4B15",70,,70,,16,,16,,40,920,"HK1003 -Blackpoint D2 - Rev.0E DD30092021"
1-441,SI20HB-4B12,"LOGISTICS AND CUSTOMS PREPARATION SECONDARY STEEL STRUCTURE HRSG20_Last Part",5121,"HK1003-Rev.0E-3",TT_Task,"55902",-,-,-,0,TK_NotStart,01/01/2022,,28/01/2022,,"SI20HB-3B72 FS","SI20HB-3B72","SI20HB-3C80 FS","SI20HB-3C80",74,,77,,17,,18,,43,1368,"HK1003 -Blackpoint D2 - Rev.0E DD30092021"
1-442,SI20HB-3B72,"TIMES OF COMPLETION (FINAL DATA IN KANLOG) SECONDARY STEEL STRUCTURE HRSG20_Last Part",5121,"HK1003-Rev.0E-3",TT_FinMile,"55902",-,-,-,0,TK_NotStart,31/12/2021,,31/12/2021,,"SI20HB-3C91 FS","SI20HB-3C91","SI20HB-4B12 FS","SI20HB-4B12",73,,73,,17,,17,,43,1368,"HK1003 -Blackpoint D2 - Rev.0E DD30092021"
1-443,SI20HB-4B11,"LOGISTICS AND CUSTOMS PREPARATION SECONDARY STEEL STRUCTURE HRSG20_1st Part incl. Drum Supports",5121,"HK1003-Rev.0E-3",TT_Task,"55902",-,-,-,0,TK_NotStart,01/12/2021,,28/12/2021,,"SI20HB-3B71 FS","SI20HB-3B71","SI20HB-3B80 FS,SI20HB-4B25 FS","SI20HB-3B80,SI20HB-4B25",69,,73,,16,,17,,40,640,"HK1003 -Blackpoint D2 - Rev.0E DD30092021"
1-444,SI20HB-3B71,"TIMES OF COMPLETION (FINAL DATA IN KANLOG) SECONDARY STEEL STRUCTURE HRSG20_1st Part incl. Drum Supports",5121,"HK1003-Rev.0E-3",TT_FinMile,"55902",-,-,-,0,TK_NotStart,30/11/2021,,30/11/2021,,"SI20HB-3C25 FS","SI20HB-3C25","SI20HB-4B11 FS","SI20HB-4B11",69,,69,,16,,16,,40,640,"HK1003 -Blackpoint D2 - Rev.0E DD30092021"
1-445,SI20HB-4B10,"LOGISTICS AND CUSTOMS PREPARATION MAIN STEEL STRUCTURE HRSG20",5121,"HK1003-Rev.0E-3",TT_Task,"55902",-,-,-,0,TK_NotStart,05/11/2021,,02/12/2021,,"SI20HB-3B70 FS","SI20HB-3B70","SI20HB-3A81 FS","SI20HB-3A81",65,,69,,15,,16,,37,136,"HK1003 -Blackpoint D2 - Rev.0E DD30092021"
1-446,SI20HB-3B70,"TIMES OF COMPLETION (FINAL DATA IN KANLOG) MAIN STEEL STRUCTURE HRSG20",5121,"HK1003-Rev.0E-3",TT_FinMile,"55902",-,-,-,0,TK_NotStart,04/11/2021,,04/11/2021,,"SI20HB-3A25 FS","SI20HB-3A25","SI20HB-4B10 FS","SI20HB-4B10",65,,65,,15,,15,,37,136,"HK1003 -Blackpoint D2 - Rev.0E DD30092021"
1-447,SI20HSJ4B10,"LOGISTICS AND CUSTOMS PREPARATION -  SCR SKID HSJ/HSK",5121,"HK1003-Rev.0E-3",TT_Task,"55902",-,-,-,0,TK_NotStart,10/05/2022,,06/06/2022,,"SI20HSJ3B70 FS","SI20HSJ3B70","SI20HSJ3-80 FS","SI20HSJ3-80",92,,96,,21,,22,,64,928,"HK1003 -Blackpoint D2 - Rev.0E DD30092021"
1-448,SI20HSJ3B70,"TIMES OF COMPLETION (FINAL DATA IN KANLOG) -  SCR SKID HSJ/HSK",5121,"HK1003-Rev.0E-3",TT_FinMile,"55902",-,-,-,0,TK_NotStart,09/05/2022,,09/05/2022,,"SI20HSJ3-81 FS","SI20HSJ3-81","SI20HSJ4B10 FS","SI20HSJ4B10",92,,92,,21,,21,,64,928,"HK1003 -Blackpoint D2 - Rev.0E DD30092021"
1-449,SI20QC-4B10,"LOGISTICS AND CUSTOMS PREPARATION DOSING CONTAINER 20QC",5121,"HK1003-Rev.0E-3",TT_Task,"55902",-,-,-,0,TK_NotStart,11/05/2022,,07/06/2022,,"SI20QC-3B70 FS","SI20QC-3B70","SI20QC-3-80 FS","SI20QC-3-80",92,,96,,21,,22,,64,1632,"HK1003 -Blackpoint D2 - Rev.0E DD30092021"
1-450,SI20QC-3B70,"TIMES OF COMPLETION (FINAL DATA IN KANLOG) DOSING CONTAINER 20QC",5121,"HK1003-Rev.0E-3",TT_FinMile,"55902",-,-,-,0,TK_NotStart,10/05/2022,,10/05/2022,,"SI20QC-3-26 FS","SI20QC-3-26","SI20QC-4B10 FS","SI20QC-4B10",92,,92,,21,,21,,64,1632,"HK1003 -Blackpoint D2 - Rev.0E DD30092021"
1-451,SI20BAT4B10,"LOGISTICS AND CUSTOMS PREPARATION MAIN TRANSFORMERS 20BAT",5121,"HK1003-Rev.0E-3",TT_Task,"55902",-,-,-,0,TK_NotStart,16/06/2022,,13/07/2022,,"SI20BAT3B70 FS","SI20BAT3B70","SI20BAT3-80 FS","SI20BAT3-80",97,,101,,22,,23,,69,152,"HK1003 -Blackpoint D2 - Rev.0E DD30092021"
1-452,SI20BAT3B70,"TIMES OF COMPLETION (FINAL DATA IN KANLOG) MAIN TRANSFORMERS 20BAT",5121,"HK1003-Rev.0E-3",TT_FinMile,"55902",-,-,-,0,TK_NotStart,15/06/2022,,15/06/2022,,"SI20BAT3-25 FS","SI20BAT3-25","SI20BAT4B10 FS","SI20BAT4B10",97,,97,,22,,22,,69,152,"HK1003 -Blackpoint D2 - Rev.0E DD30092021"
1-453,SI20UBA4B10,"LOGISTICS AND CUSTOMS PREPARATION ELECTRICAL MODULES 20UBA7610/20  (TO SITE)",5121,"HK1003-Rev.0E-3",TT_Task,"55902",-,-,-,0,TK_NotStart,04/04/2022,,01/05/2022,,"SI20UBA4B11 SS,SI20UBA3B70 FS","SI20UBA4B11,SI20UBA3B70","SI20UBA3J80 FS,SI20UBA3J20# FF","SI20UBA3J80,SI20UBA3J20#",87,,91,,20,,21,,55,768,"HK1003 -Blackpoint D2 - Rev.0E DD30092021"
1-454,SI20UBA3B70,"TIMES OF COMPLETION (FINAL DATA IN KANLOG) ELECTRICAL MODULES 20UBA7610/20",5121,"HK1003-Rev.0E-3",TT_FinMile,"55902",-,-,-,0,TK_NotStart,04/04/2022,,04/04/2022,,"SI20UBA3J55 FS","SI20UBA3J55","SI20UBA4B10 FS","SI20UBA4B10",87,,87,,20,,20,,55,768,"HK1003 -Blackpoint D2 - Rev.0E DD30092021"
1-455,SI20PGB4M11,"LOGISTICS AND CUSTOMS PREPARATION MODULE 20PGB20Y",5121,"HK1003-Rev.0E-3",TT_Task,"55902",-,-,-,0,TK_NotStart,04/03/2022,,31/03/2022,,"SI20PGB3M71 FS","SI20PGB3M71","SI20PGB3M81 FS","SI20PGB3M81",82,,86,,19,,20,,51,1352,"HK1003 -Blackpoint D2 - Rev.0E DD30092021"
1-456,SI20PGB3M71,"TIMES OF COMPLETION (FINAL DATA IN KANLOG) MODULE 20PGB20Y",5121,"HK1003-Rev.0E-3",TT_FinMile,"55902",-,-,-,0,TK_NotStart,04/03/2022,,04/03/2022,,"SI20---3M71 FS","SI20---3M71","SI20PGB4M11 FS,SI20---3M113 FS","SI20PGB4M11,SI20---3M113",82,,82,,19,,19,,51,1352,"HK1003 -Blackpoint D2 - Rev.0E DD30092021"
1-457,SI20PGB4B10,"LOGISTICS AND CUSTOMS PREPARATION CCW PUMP 20PGB",5121,"HK1003-Rev.0E-3",TT_Task,"55902",-,-,-,0,TK_NotStart,20/10/2021,,16/11/2021,,"SI20PGB3B70 FS","SI20PGB3B70","SI20PGB3B80 FS","SI20PGB3B80",63,,67,,14,,15,,35,208,"HK1003 -Blackpoint D2 - Rev.0E DD30092021"
1-458,SI20PGB3B70,"TIMES OF COMPLETION (FINAL DATA IN KANLOG) CCW PUMP 20PGB",5121,"HK1003-Rev.0E-3",TT_FinMile,"55902",-,-,-,0,TK_NotStart,19/10/2021,,19/10/2021,,"SI20PGB3B32 FS","SI20PGB3B32","SI20PGB4B10 FS","SI20PGB4B10",63,,63,,14,,14,,35,208,"HK1003 -Blackpoint D2 - Rev.0E DD30092021"
1-459,SI20PGB4D10,"LOGISTICS AND CUSTOMS PREPARATION CCW EXPANSION TANK 20PGB",5121,"HK1003-Rev.0E-3",TT_Task,"55902",-,-,-,0,TK_NotStart,17/10/2021,,14/11/2021,,"SI20PGB3D70 FS","SI20PGB3D70","SI20PGB3D80 FS","SI20PGB3D80",63,,67,,14,,15,,34,208,"HK1003 -Blackpoint D2 - Rev.0E DD30092021"
1-460,SI20PGB3D70,"TIMES OF COMPLETION (FINAL DATA IN KANLOG) CCW EXPANSION TANK 20PGB",5121,"HK1003-Rev.0E-3",TT_FinMile,"55902",-,-,-,0,TK_NotStart,16/10/2021,,16/10/2021,,"SI20PGB3D33 FS","SI20PGB3D33","SI20PGB4D10 FS","SI20PGB4D10",63,,63,,14,,14,,34,208,"HK1003 -Blackpoint D2 - Rev.0E DD30092021"
1-461,SI20LDK4B10,"LOGISTICS AND CUSTOMS PREPARATION CONDENSATE POLISHING PLANT 20LD",5121,"HK1003-Rev.0E-3",TT_Task,"55902",-,-,-,0,TK_NotStart,29/04/2022,,26/05/2022,,"SI20LDK3B70 FS","SI20LDK3B70","SI20LDK3B80 FS","SI20LDK3B80",90,,94,,21,,22,,60,296,"HK1003 -Blackpoint D2 - Rev.0E DD30092021"
1-462,SI20LDK3B70,"TIMES OF COMPLETION (FINAL DATA IN KANLOG) CONDENSATE POLISHING PLANT 20LD",5121,"HK1003-Rev.0E-3",TT_FinMile,"55902",-,-,-,0,TK_NotStart,28/04/2022,,28/04/2022,,"SI20LDK3B32 FS","SI20LDK3B32","SI20LDK4B10 FS","SI20LDK4B10",90,,90,,21,,21,,59,296,"HK1003 -Blackpoint D2 - Rev.0E DD30092021"
1-463,SI20SAM4B10,"LOGISTICS AND CUSTOMS PREPARATION DUCT FOR HVAC SYSTEM UMC 20SA",5121,"HK1003-Rev.0E-3",TT_Task,"55902",-,-,-,0,TK_NotStart,24/06/2022,,21/07/2022,,"SI20SAM3B70 FS","SI20SAM3B70","SI20S--3-80 FS","SI20S--3-80",98,,102,,23,,23,,70,1080,"HK1003 -Blackpoint D2 - Rev.0E DD30092021"
1-464,SI20SAM3B70,"TIMES OF COMPLETION (FINAL DATA IN KANLOG) DUCT FOR HVAC SYSTEM UMC 20SA",5121,"HK1003-Rev.0E-3",TT_FinMile,"55902",-,-,-,0,TK_NotStart,23/06/2022,,23/06/2022,,"SI20SAM3E25 FS","SI20SAM3E25","SI20SAM4B10 FS","SI20SAM4B10",98,,98,,23,,23,,70,1080,"HK1003 -Blackpoint D2 - Rev.0E DD30092021"
1-465,SI20MB-4-10,"LOGISTICS AND CUSTOMS PREPARATION GAS TURBINE 20MB-",5121,"HK1003-Rev.0E-3",TT_Task,"55902",-,-,-,0,TK_NotStart,02/04/2022,,29/04/2022,,"SI20MB-3-70 FS","SI20MB-3-70","SP20MB-3-80 FS","SP20MB-3-80",87,,90,,20,,21,,55,184,"HK1003 -Blackpoint D2 - Rev.0E DD30092021"
1-466,SI20MB-3-70,"TIMES OF COMPLETION (FINAL DATA IN KANLOG) GAS TURBINE 20MB-",5121,"HK1003-Rev.0E-3",TT_FinMile,"55902",-,-,-,0,TK_NotStart,01/04/2022,,01/04/2022,,"SP20MB-3-25 FS","SP20MB-3-25","SP20MB-3C70 FF,SI20---3-77 FF,SI20MB-4-10 FS","SP20MB-3C70,SI20---3-77,SI20MB-4-10",86,,86,,20,,20,,54,184,"HK1003 -Blackpoint D2 - Rev.0E DD30092021"
1-467,SI20MB-4-11,"LOGISTICS AND CUSTOMS PREPARATION - GT INTERCONNECTING PIPING 20MB-",5121,"HK1003-Rev.0E-3",TT_Task,"55902",-,-,-,0,TK_NotStart,14/05/2022,,10/06/2022,,"SI20MB-3-71 FS","SI20MB-3-71","SP20MB-3A80 FS","SP20MB-3A80",93,,96,,21,,22,,64,376,"HK1003 -Blackpoint D2 - Rev.0E DD30092021"
1-468,SI20MB-3-71,"TIMES OF COMPLETION (FINAL DATA IN KANLOG) GT INTERCONNECTING PIPING 20MB-",5121,"HK1003-Rev.0E-3",TT_FinMile,"55902",-,-,-,0,TK_NotStart,13/05/2022,,13/05/2022,,"SP20MB-3A25 FS","SP20MB-3A25","SI20MB-4-11 FS","SI20MB-4-11",92,,92,,21,,21,,64,376,"HK1003 -Blackpoint D2 - Rev.0E DD30092021"
1-469,SI--EK-4-10,"LOGISTICS AND CUSTOMS PREPARATION GAS FINAL FILTER/ PREHEATER 20EKG",5121,"HK1003-Rev.0E-3",TT_Task,"55902",-,-,-,0,TK_NotStart,20/07/2022,,16/08/2022,,"SI--EK-3-70 FS","SI--EK-3-70","SI20EK-3-80 FS","SI20EK-3-80",102,,106,,23,,24,,74,656,"HK1003 -Blackpoint D2 - Rev.0E DD30092021"
1-470,SI--EK-3-70,"TIMES OF COMPLETION (FINAL DATA IN KANLOG) GAS FINAL FILTER/ PREHEATER 20EKG",5121,"HK1003-Rev.0E-3",TT_FinMile,"55902",-,-,-,0,TK_NotStart,19/07/2022,,19/07/2022,,"SI20EK-3-26 FS","SI20EK-3-26","SI--EK-4-10 FS","SI--EK-4-10",102,,102,,23,,23,,74,656,"HK1003 -Blackpoint D2 - Rev.0E DD30092021"
1-471,SI--C--4-10,"LOGISTICS AND CUSTOMS PREPARATION BOP I&C FIELD DEVICES",5121,"HK1003-Rev.0E-3",TT_Task,"55902",-,-,-,0,TK_NotStart,16/03/2022,,12/04/2022,,"SI--C--3-70 FS","SI--C--3-70","SI--C--3E80 FS","SI--C--3E80",84,,88,,19,,20,,53,1312,"HK1003 -Blackpoint D2 - Rev.0E DD30092021"
1-472,SI--C--3-70,"TIMES OF COMPLETION (FINAL DATA IN KANLOG) BOP I&C FIELD DEVICES",5121,"HK1003-Rev.0E-3",TT_FinMile,"55902",-,-,-,0,TK_NotStart,15/03/2022,,15/03/2022,,"SI--C--3E27 FS","SI--C--3E27","SI--C--4-10 FS","SI--C--4-10",84,,84,,19,,19,,53,1312,"HK1003 -Blackpoint D2 - Rev.0E DD30092021"
1-473,SI--CP-4-10,"LOGISTICS AND CUSTOMS PREPARATION BOP I&C FIELD CABINETS",5121,"HK1003-Rev.0E-3",TT_Task,"55902",-,-,-,0,TK_NotStart,21/05/2022,,17/06/2022,,"SI--CP-3-70 FS","SI--CP-3-70","SI--CP-3-80 FS","SI--CP-3-80",94,,97,,21,,22,,66,784,"HK1003 -Blackpoint D2 - Rev.0E DD30092021"
1-474,SI--CP-3-70,"TIMES OF COMPLETION (FINAL DATA IN KANLOG) BOP I&C FIELD CABINETS",5121,"HK1003-Rev.0E-3",TT_FinMile,"55902",-,-,-,0,TK_NotStart,20/05/2022,,20/05/2022,,"SI--CP-3-25 FS","SI--CP-3-25","SI--CP-4-10 FS","SI--CP-4-10",93,,93,,21,,21,,65,784,"HK1003 -Blackpoint D2 - Rev.0E DD30092021"
1-475,SI--UB-2-21,"BASIC DESIGN PLANT LAYOUT TRANSFORMER AREA",5121,"HK1003-Rev.0E-3",TT_Task,"55902",-,-,-,100,TK_Complete,26/02/2021,26/02/2021,07/04/2021,07/04/2021,"SI--UB-2E40 FS","SI--UB-2E40","SI--UB-2-35 FS","SI--UB-2-35",29,29,35,35,6,6,8,8,5,,"HK1003 -Blackpoint D2 - Rev.0E DD30092021"
1-476,SI--UB-2-35,"(C) BASIC DESIGN PLANT LAYOUT DWGS (UE)  TRANSFORMER AREA AVAILABLE",5121,"HK1003-Rev.0E-3",TT_FinMile,"55902",-,-,-,100,TK_Complete,07/04/2021,07/04/2021,07/04/2021,07/04/2021,"SI-----1-01 FS,SI--UB-2-21 FS","SI-----1-01,SI--UB-2-21","SI--PM-2-30 FS,SI--BZP2-30 FS,SI20UBA2-10 FS,SI--UBA2-65 FS,SI20UBX2-15 FS,SI--UBA2-81 FS,SI--UBF2-77 FS,SI20UBX2C-50 FS,SI--BAA2-21 FS,SI20UZJ2-81 FS,SI--UB-2-36 FS,SI--PEM6-20& FS,SI20UBN2-106 FS,SI--2222-141 FS,SI-P222-158 FS,SI-P222-175 FS,SI20UBZ2-82 FS,SI20UBZ2-65 FS","SI--PM-2-30,SI--BZP2-30,SI20UBA2-10,SI--UBA2-65,SI20UBX2-15,SI--UBA2-81,SI--UBF2-77,SI20UBX2C-50,SI--BAA2-21,SI20UZJ2-81,SI--UB-2-36,SI--PEM6-20&,SI20UBN2-106,SI--2222-141,SI-P222-158,SI-P222-175,SI20UBZ2-82,SI20UBZ2-65",35,35,35,35,8,8,8,8,7,,"HK1003 -Blackpoint D2 - Rev.0E DD30092021"
1-477,SI--UB-2E40,"(MS2) DESIGN LOAD DATA, DIMENSIONS  TRANSFORMER AREA AVAILABLE",5121,"HK1003-Rev.0E-3",TT_FinMile,"55902",-,-,-,100,TK_Complete,26/02/2021,26/02/2021,26/02/2021,26/02/2021,"SI20BAT2-87 FS","SI20BAT2-87","SI--UB-2-21 FS","SI--UB-2-21",29,29,29,29,6,6,6,6,5,,"HK1003 -Blackpoint D2 - Rev.0E DD30092021"
1-478,SI--UEN2-40,"(MS2) DESIGN LOAD DATA, DIMENSIONS  FUEL GAS AREA  AVAILABLE",5121,"HK1003-Rev.0E-3",TT_FinMile,"55902",-,-,-,100,TK_Complete,20/03/2021,20/03/2021,20/03/2021,20/03/2021,"SI-----1-05 FS,SI--EK-2-77 FS","SI-----1-05,SI--EK-2-77","SI--UE-2E36 FS,SI--UEN-2-46 FS","SI--UE-2E36,SI--UEN-2-46",33,33,33,33,7,7,7,7,6,,"HK1003 -Blackpoint D2 - Rev.0E DD30092021"
1-479,SI20PGB4C10,"LOGISTICS AND CUSTOMS PREPARATION HEAT EXCHANGER 20PGB",5121,"HK1003-Rev.0E-3",TT_Task,"55902",-,-,-,100,TK_Complete,16/08/2021,16/08/2021,12/09/2021,12/09/2021,"SI20PGB3C70 FS","SI20PGB3C70","SI20PGB3C80 FS","SI20PGB3C80",54,54,58,58,12,12,13,13,26,,"HK1003 -Blackpoint D2 - Rev.0E DD30092021"
1-480,SI20PGB3C70,"TIMES OF COMPLETION (FINAL DATA IN KANLOG) HEAT EXCHANGER 20PGB",5121,"HK1003-Rev.0E-3",TT_FinMile,"55902",-,-,-,100,TK_Complete,15/08/2021,15/08/2021,15/08/2021,15/08/2021,"SI20PGB3C41 FS","SI20PGB3C41","SI20PGB4C10 FS","SI20PGB4C10",54,54,54,54,12,12,12,12,26,,"HK1003 -Blackpoint D2 - Rev.0E DD30092021"
1-481,SI20PCB4B10,"LOGISTICS AND CUSTOMS PREPARATION SERVICE COOLING WATER BOOSTER PUMP 20PCB",5121,"HK1003-Rev.0E-3",TT_Task,"55902",-,-,-,0,TK_NotStart,20/10/2021,,16/11/2021,,"SI20PCB3B70 FS","SI20PCB3B70","SI20PCB3B80 FS","SI20PCB3B80",63,,67,,14,,15,,35,208,"HK1003 -Blackpoint D2 - Rev.0E DD30092021"
1-482,SI20PCB3B70,"TIMES OF COMPLETION (FINAL DATA IN KANLOG) SERVICE COOLING WATER BOOSTER PUMP 20PCB",5121,"HK1003-Rev.0E-3",TT_FinMile,"55902",-,-,-,0,TK_NotStart,19/10/2021,,19/10/2021,,"SI20PCB3B31 FS","SI20PCB3B31","SI20PCB4B10 FS","SI20PCB4B10",63,,63,,14,,14,,35,208,"HK1003 -Blackpoint D2 - Rev.0E DD30092021"
1-483,SI20LDK4B11,"LOGISTICS AND CUSTOMS PREPARATION CONDENSATE POLISHING PUMP 20LDK",5121,"HK1003-Rev.0E-3",TT_Task,"55902",-,-,-,61,TK_Active,13/09/2021,13/09/2021,10/10/2021,,"SI20LDK3B71 FS","SI20LDK3B71","SI20LDK3B81 FS","SI20LDK3B81",58,58,62,,13,13,14,,29,240,"HK1003 -Blackpoint D2 - Rev.0E DD30092021"
1-484,SI20LDK3B71,"TIMES OF COMPLETION (FINAL DATA IN KANLOG) CONDENSATE POLISHING PUMP 20LDK",5121,"HK1003-Rev.0E-3",TT_FinMile,"55902",-,-,-,100,TK_Complete,12/09/2021,12/09/2021,12/09/2021,12/09/2021,"SI20LDK3B31 FS","SI20LDK3B31","SI20LDK4B11 FS","SI20LDK4B11",58,58,58,58,13,13,13,13,29,,"HK1003 -Blackpoint D2 - Rev.0E DD30092021"
1-485,SI20SMM4-10,"LOGISTICS AND CUSTOMS PREPARATION CRANE 20SMM01/02/03 FOR 20UMC",5121,"HK1003-Rev.0E-3",TT_Task,"55902",-,-,-,0,TK_NotStart,16/12/2021,,12/01/2022,,"SI20SMM3-70 FS","SI20SMM3-70","SI20SMM3-80 FS,SI20SMM2-83 SS","SI20SMM3-80,SI20SMM2-83",71,,75,,16,,17,,42,128,"HK1003 -Blackpoint D2 - Rev.0E DD30092021"
1-486,SI20SMM3-70,"TIMES OF COMPLETION (FINAL DATA IN KANLOG) CRANE 20SMM01/02/03 FOR 20UMC",5121,"HK1003-Rev.0E-3",TT_FinMile,"55902",-,-,-,0,TK_NotStart,16/12/2021,,16/12/2021,,"SI20SMM3-26 FS,SI20SMM3-82 FS","SI20SMM3-26,SI20SMM3-82","SI20SMM4-10 FS","SI20SMM4-10",71,,71,,16,,16,,42,128,"HK1003 -Blackpoint D2 - Rev.0E DD30092021"
1-487,SI20MBP4A40,"(OTD-OS) ON SITE GT FUEL GAS STRAINER SKID MBP",5121,"HK1003-Rev.0E-3",TT_FinMile,"55902",-,-,-,0,TK_NotStart,23/07/2022,,23/07/2022,,"SI20MBP4-27 FS","SI20MBP4-27","SI20MBP6-11 FS,SI20MB-4-40 FS","SI20MBP6-11,SI20MB-4-40",103,,103,,24,,24,,74,272,"HK1003 -Blackpoint D2 - Rev.0E DD30092021"
1-488,SI20MBX4-25,"TRANSPORT MBX INSTRUMENT AIR SKID TANK",5121,"HK1003-Rev.0E-3",TT_Task,"55902",-,-,-,0,TK_NotStart,30/04/2022,,24/06/2022,,"SP20MBX3A80 FS","SP20MBX3A80","SP20MBX4A40 FS,SI20MBX4-12 FS","SP20MBX4A40,SI20MBX4-12",91,,98,,21,,23,,60,2296,"HK1003 -Blackpoint D2 - Rev.0E DD30092021"
1-489,SI20MBX4-12,"ERECTION MBX INSTRUMENT AIR SKID TANK",5121,"HK1003-Rev.0E-3",TT_Task,"55902",-,-,-,0,TK_NotStart,27/08/2022,,16/09/2022,,"SI20MBX4-25 FS,SP20MBX4A40 FS,SI20UMC5C55 FS,SI20MBA6-16 FS","SI20MBX4-25,SP20MBX4A40,SI20UMC5C55,SI20MBA6-16","SI20MBH8-10 FS","SI20MBH8-10",108,,110,,25,,25,,79,1792,"HK1003 -Blackpoint D2 - Rev.0E DD30092021"
1-490,SI20MBP4-27,"TRANSPORT GTGT FUEL GAS STRAINER SKID MBP",5121,"HK1003-Rev.0E-3",TT_Task,"55902",-,-,-,0,TK_NotStart,30/04/2022,,24/06/2022,,"SP20MBP3A80 FS","SP20MBP3A80","SI20MBP6-11 FS,SI20MBP4A40 FS","SI20MBP6-11,SI20MBP4A40",91,,98,,21,,23,,60,504,"HK1003 -Blackpoint D2 - Rev.0E DD30092021"
1-491,SI20MBP6-11,"ERECTION FUEL GAS STRAINER SKID MBP",5121,"HK1003-Rev.0E-3",TT_Task,"55902",-,-,-,0,TK_NotStart,27/08/2022,,16/09/2022,,"SI20MBA6-16 FS,SI20MBP4A40 FS,SI20MBP4-27 FS,SI20UMC5C55 FS","SI20MBA6-16,SI20MBP4A40,SI20MBP4-27,SI20UMC5C55","SI20MBP8-10 FS,SI20EKG6H15 FS,SI-P222-154 FS","SI20MBP8-10,SI20EKG6H15,SI-P222-154",108,,110,,25,,25,,79,1112,"HK1003 -Blackpoint D2 - Rev.0E DD30092021"
1-492,SI20MPB6E82,"ERECTION OF ENCLOSURE 20MPB",5121,"HK1003-Rev.0E-3",TT_Task,"55902",-,-,-,0,TK_NotStart,08/10/2022,,25/11/2022,,"SP20MPB4A43 FS,SI20MBA6-16 FS,SI20MB-6-10 FS,SI20UMC5C55 FS,SI20MB-6-20 SS,SI20MPB6E83 FS,SI20BZL7F16 FS","SP20MPB4A43,SI20MBA6-16,SI20MB-6-10,SI20UMC5C55,SI20MB-6-20,SI20MPB6E83,SI20BZL7F16","SI20MBA8-10 FS,SI20MPB7E81 FS,SI20SAM8-10 FS,SI20SAM8-29 FS,SI20SGJ6-5 FS,SI20SGY7A28 FS","SI20MBA8-10,SI20MPB7E81,SI20SAM8-10,SI20SAM8-29,SI20SGJ6-5,SI20SGY7A28",114,,120,,26,,28,,83,224,"HK1003 -Blackpoint D2 - Rev.0E DD30092021"
1-493,SI20MPB4-26,"TRANSPORT ENCLOSURE 20MPB",5121,"HK1003-Rev.0E-3",TT_Task,"55902",-,-,-,0,TK_NotStart,30/04/2022,,24/06/2022,,"SP20MPB3A93 FS","SP20MPB3A93","SP20MPB4A43 FS","SP20MPB4A43",91,,98,,21,,23,,60,504,"HK1003 -Blackpoint D2 - Rev.0E DD30092021"
1-494,SI20URD5-46,"BACKFILLING 20URD",5121,"HK1003-Rev.0E-3",TT_Task,"55902",-,-,-,0,TK_NotStart,04/03/2022,,10/03/2022,,"SI20URD5-37 FS,SI20URD5-47 FS","SI20URD5-37,SI20URD5-47","SI20BZL7E16 FS,SI20URD5-45 FS,SI20URD5-35# FF","SI20BZL7E16,SI20URD5-45,SI20URD5-35#",82,,83,,19,,19,,51,1352,"HK1003 -Blackpoint D2 - Rev.0E DD30092021"
1-495,SI20URD5-37,"CONSTRUCTION OF WALLS 20URD",5121,"HK1003-Rev.0E-3",TT_Task,"55902",-,-,-,0,TK_NotStart,26/11/2021,,20/01/2022,,"SI20URD5-36 FS","SI20URD5-36","SI20URD5-46 FS,SI20URD5-47 FS","SI20URD5-46,SI20URD5-47",68,,76,,16,,17,,39,1352,"HK1003 -Blackpoint D2 - Rev.0E DD30092021"
1-496,SI20URD5-36,"CONSTRUCTION OF SLAB +/-0.00M 20URD",5121,"HK1003-Rev.0E-3",TT_Task,"55902",-,-,-,0,TK_NotStart,01/10/2021,,25/11/2021,,"SI20URD5-10 FS","SI20URD5-10","SI20URD5-35# SS,SI20URD5-37 FS","SI20URD5-35#,SI20URD5-37",60,,68,,14,,16,,30,1352,"HK1003 -Blackpoint D2 - Rev.0E DD30092021"
1-497,SI20URA5-06,"WORK PREPARATION, EXCAVATION 20URD",5121,"HK1003-Rev.0E-3",TT_Task,"55902",-,-,-,96,TK_Active,03/09/2021,03/09/2021,30/09/2021,,"SI--5555-15 FS,SI-----5-22 FS,SI-----5-21& FS,SI-----5-20 FS,SI-P222-84 FS,SI20URA5-05 SS,SI--URA2-103 FS","SI--5555-15,SI-----5-22,SI-----5-21&,SI-----5-20,SI-P222-84,SI20URA5-05,SI--URA2-103","SI20URD5-10 FS,SI20URD5-35# SS,SI-P222-131# FF,SI-P222-131# SS","SI20URD5-10,SI20URD5-35#,SI-P222-131#,SI-P222-131#",56,56,60,,13,13,14,,28,1352,"HK1003 -Blackpoint D2 - Rev.0E DD30092021"
1-498,SI20URA5-54,"CONSTRUCTION WALLS/RISERS/COLUMNS/BEAMS PART 2 20URA",5121,"HK1003-Rev.0E-3",TT_Task,"55902",-,-,-,0,TK_NotStart,23/01/2022,,09/07/2022,,"SI--URA2-91 FS,SI--URA2-89 FS","SI--URA2-91,SI--URA2-89","SI20URA5-51 FS","SI20URA5-51",77,,101,,18,,23,,46,128,"HK1003 -Blackpoint D2 - Rev.0E DD30092021"
1-499,SI20URA5-53,"CONSTRUCTION ROOF CHANNEL/WALLS PART 1 20URA",5121,"HK1003-Rev.0E-3",TT_Task,"55902",-,-,-,0,TK_NotStart,16/06/2022,,24/08/2022,,"SI20URA5-52 FS","SI20URA5-52","SI20URA5-45 FS","SI20URA5-45",97,,107,,22,,25,,69,72,"HK1003 -Blackpoint D2 - Rev.0E DD30092021"
1-500,SI20URA5-52,"CONSTRUCTION WALLS/RISERS/COLUMNS/BEAMS PART 1 20URA",5121,"HK1003-Rev.0E-3",TT_Task,"55902",-,-,-,0,TK_NotStart,02/01/2022,,15/06/2022,,"SI--URA2-91 FS,SI--URA2-89 FS,SI20URA5-17.10 FS,SI20URA5-49.10 FS,SI20URA5-19.09 FS,SI20URA5-48.09 FS,SI--URA2-107 FS","SI--URA2-91,SI--URA2-89,SI20URA5-17.10,SI20URA5-49.10,SI20URA5-19.09,SI20URA5-48.09,SI--URA2-107","SI20URA5-53 FS","SI20URA5-53",74,,97,,17,,22,,44,72,"HK1003 -Blackpoint D2 - Rev.0E DD30092021"
1-501,SI20URA5-51,"CONSTRUCTION ROOF CHANNEL/WALLS PART 2 20URA",5121,"HK1003-Rev.0E-3",TT_Task,"55902",-,-,-,0,TK_NotStart,10/07/2022,,17/09/2022,,"SI20URA5-54 FS","SI20URA5-54","SI20URA5E45 FS","SI20URA5E45",101,,111,,23,,25,,73,128,"HK1003 -Blackpoint D2 - Rev.0E DD30092021"
1-502,SI20PAB5-75,"PAB BACKFILLING (APPROX. UP TO PIPE AXISOR PIPE CROWN LEVEL)",5121,"HK1003-Rev.0E-3",TT_Task,"55902",-,-,-,45,TK_Active,05/09/2021,05/09/2021,30/10/2021,,"SI20PAB5-80 FS","SI20PAB5-80","SI20PAB8-05 FS,SI20UPY5P45 FS,SI20UPY6M10 FS,SI20PAB5-100 FS","SI20PAB8-05,SI20UPY5P45,SI20UPY6M10,SI20PAB5-100",57,57,65,,13,13,15,,28,1128,"HK1003 -Blackpoint D2 - Rev.0E DD30092021"
1-503,SI20PAB5-60,"ERECTION PIPING SYSTEM (OUTSIDE) 20PAB41(NORTH/EAST OF 20UMC SOUTH OF 20URD)-OVERALL",5121,"HK1003-Rev.0E-3",TT_Task,"55902",-,-,-,52,TK_Active,02/08/2021,02/08/2021,22/11/2021,,"SI20PAB5-70 FS,SI20PAB5-35 FS,SI20PAB3-30 FS,SI20PAB5-85.36 FS,SI20PAB5-60.22 FF,SI20PAB5-60.24 SS","SI20PAB5-70,SI20PAB5-35,SI20PAB3-30,SI20PAB5-85.36,SI20PAB5-60.22,SI20PAB5-60.24","SI20PAB5-80 SS,SI20PAB5-65# SS,SI20PAB5-100 FS,SI20UZ6A10 SS,SI20PAB5-65# FF","SI20PAB5-80,SI20PAB5-65#,SI20PAB5-100,SI20UZ6A10,SI20PAB5-65#",52,52,68,,12,12,15,,24,944,"HK1003 -Blackpoint D2 - Rev.0E DD30092021"
1-504,SI20PAB5-80,"READY FOR FIRST BACK FILLING PAB-PIPES OUTSIDE UMC - URD",5121,"HK1003-Rev.0E-3",TT_Mile,"55902",-,-,-,100,TK_Complete,05/09/2021,05/09/2021,05/09/2021,05/09/2021,"SI20PAB5-60 SS","SI20PAB5-60","SI20PAB5-75 FS","SI20PAB5-75",57,57,57,57,13,13,13,13,28,,"HK1003 -Blackpoint D2 - Rev.0E DD30092021"
1-505,SI20MKA9-41,"SYSTEM CHECKS 20MBA",5121,"HK1003-Rev.0E-3",TT_Task,"55902",-,-,-,0,TK_NotStart,29/06/2023,,29/06/2023,,"SI20MKA9-10 FS,SI20EK-8-46 FS","SI20MKA9-10,SI20EK-8-46","SI20MB-9-15 FS","SI20MB-9-15",151,,151,,35,,35,,99,8,"HK1003 -Blackpoint D2 - Rev.0E DD30092021"
1-506,SI20HA-6-20,"PREPARATION PRESSURE TEST HRSG20",5121,"HK1003-Rev.0E-3",TT_Task,"55902",-,-,-,0,TK_NotStart,25/02/2023,,17/03/2023,,"SI20HB-6C23 FS,SI20HB-4A41 FS,SI20HA-6-26 FF,SI20HB-6-14 FF,SI20HB-6-13 FF,SI20HB-6-20 FF,SI20LAB6H15 FS,SI20HB-6-53 FS,SI20HB-8-26 FS","SI20HB-6C23,SI20HB-4A41,SI20HA-6-26,SI20HB-6-14,SI20HB-6-13,SI20HB-6-20,SI20LAB6H15,SI20HB-6-53,SI20HB-8-26","SI20HA-6-56 FS,SI20HA-6-16# FF,SI20HA-6-17# FF","SI20HA-6-56,SI20HA-6-16#,SI20HA-6-17#",134,,136,,31,,31,,91,0,"HK1003 -Blackpoint D2 - Rev.0E DD30092021"
1-507,SI20LCL8B10,"(TOP-20LCL) BOILER BLOWDOWN SYSTEM",5121,"HK1003-Rev.0E-3",TT_FinMile,"55902",-,-,-,0,TK_NotStart,14/04/2023,,14/04/2023,,"SI20LCL6A15 FS,SI20HA-4B40 FS,SI20HA-6A48 FS,SI20HB-6-14 FS,SI20HA-6-56 FS,SI20LCL6A45 FS,SI--9998-21& SS,SI20LCL7B15 FS,SI20LCL6B15 FS,SI20LCL7A15 FS","SI20LCL6A15,SI20HA-4B40,SI20HA-6A48,SI20HB-6-14,SI20HA-6-56,SI20LCL6A45,SI--9998-21&,SI20LCL7B15,SI20LCL6B15,SI20LCL7A15","SI20LCL8B25 FS,SI20TPM20A8-30 FS,SI20TPM21A8-30 FS,SI20TPM22A8-30 FS,SI20TPM23A8-30 FS","SI20LCL8B25,SI20TPM20A8-30,SI20TPM21A8-30,SI20TPM22A8-30,SI20TPM23A8-30",140,,140,,32,,32,,95,48,"HK1003 -Blackpoint D2 - Rev.0E DD30092021"
1-508,SI20LCA7A15,"ELECTRICAL ERECTION / VALVES CONDENSATE SYSTEM 20LCA",5121,"HK1003-Rev.0E-3",TT_Task,"55902",-,-,-,0,TK_NotStart,16/02/2023,,22/02/2023,,"SI20LCA6A45 FF,SI20BZK7E25 FF,SI20BZK7E25 FS,SI20BZP7D18 FS,SI20BZP7D19 FS,SI20BZP7-5 FS,SI20BZP7-196 FS,SI20BZP7-174 FS,SI20UMY6M10 FS,SI20UMY6M11 FS,SI20UMY6M12 FS,SI--2227-68 FS,SI--BZP2-05 FS,SI--PEE7-20 FS,SI--BZP4B40 FS","SI20LCA6A45,SI20BZK7E25,SI20BZK7E25,SI20BZP7D18,SI20BZP7D19,SI20BZP7-5,SI20BZP7-196,SI20BZP7-174,SI20UMY6M10,SI20UMY6M11,SI20UMY6M12,SI--2227-68,SI--BZP2-05,SI--PEE7-20,SI--BZP4B40","SI20LAC8B10 FS,SI20LD8B110 FS,SI20LCA8M10 FS,SI20LAC8B10 FF,SI20BZK7D11# FF,SI20BZK7D11# SS","SI20LAC8B10,SI20LD8B110,SI20LCA8M10,SI20LAC8B10,SI20BZK7D11#,SI20BZK7D11#",132,,133,,30,,31,,91,240,"HK1003 -Blackpoint D2 - Rev.0E DD30092021"
1-509,SI20UBA8-60,"(TOP-20UBA1) POWER CONTROL CENTER (ELECTRICAL MODULES) 20UBA1110/20",5121,"HK1003-Rev.0E-3",TT_FinMile,"55902",-,-,-,0,TK_NotStart,10/04/2023,,10/04/2023,,"SI20UBA7L15 FS,SI20SGY7A16 FS,SI20BZL7A19 FS,SI20BZK7-200 FS","SI20UBA7L15,SI20SGY7A16,SI20BZL7A19,SI20BZK7-200","SI20HA-8-25 FS,SI20B--8-51 FS","SI20HA-8-25,SI20B--8-51",140,,140,,32,,32,,94,56,"HK1003 -Blackpoint D2 - Rev.0E DD30092021"
1-510,SI20UBA7L15,"INSTALLATION ELECTRICAL MODULES 20UBA1110/20",5121,"HK1003-Rev.0E-3",TT_Task,"55902",-,-,-,0,TK_NotStart,21/11/2022,,30/11/2022,,"SI20CJF4-40 FS,SI--UBA2K05 FS,SI20BZP7-60 SS,SI20UBA7C-31 FS","SI20CJF4-40,SI--UBA2K05,SI20BZP7-60,SI20UBA7C-31","SI20UBA8-60 FS,SI20LAC8B10 FS,SI20CPC8A10 FS,SI20SGC6J17 FS,SI20SGJ6-16 FS,SI20SGY7A16 FS,SI20BZL7A19 FS,SI20UBA5B-40 SS,SI20BZK7-180 FS","SI20UBA8-60,SI20LAC8B10,SI20CPC8A10,SI20SGC6J17,SI20SGJ6-16,SI20SGY7A16,SI20BZL7A19,SI20UBA5B-40,SI20BZK7-180",120,,121,,28,,28,,85,216,"HK1003 -Blackpoint D2 - Rev.0E DD30092021"
1-511,SI20BZK7L25,"CABLING GT LATS GT20",5121,"HK1003-Rev.0E-3",TT_Task,"55902",-,-,-,0,TK_NotStart,18/12/2022,,25/02/2023,,"SI20BZK7-25 FS,SI20BZK4-41 FS,SI--B--7-55 FS,SI20BZP7-140 FS,SI--B--2-68 FS,SI20C--7B15 SS,SI20BZK7-25 SS,SI--B--2-93 FS,SI20BZK7A37 FS,SI--BZK4-40 FS","SI20BZK7-25,SI20BZK4-41,SI--B--7-55,SI20BZP7-140,SI--B--2-68,SI20C--7B15,SI20BZK7-25,SI--B--2-93,SI20BZK7A37,SI--BZK4-40","SI20UMC5D50 FS,SI20MBR8-26 FS,SI20SAM8-29 FS,SI20MBP8-10 FS,SI20MBA8D10 FS,SI20MBA8-10 FS,SI20CYQ8-10 FS,SI20MBA8A10 FS,SI20MBX8E10 FS,SI20MBV8-10 FS,SI20CYE8-10 FS,SI20MBX8-10 FS,SI20MBL8-10 FS,SI20MBA8B10 FS,SI20MBH8-10 FS,SI20SGJ8-21 FS,SI20BZK7D10# FF,SI20BZK7D10# SS,SI20BZK7C25 FS,SI20CPA8-10 FS","SI20UMC5D50,SI20MBR8-26,SI20SAM8-29,SI20MBP8-10,SI20MBA8D10,SI20MBA8-10,SI20CYQ8-10,SI20MBA8A10,SI20MBX8E10,SI20MBV8-10,SI20CYE8-10,SI20MBX8-10,SI20MBL8-10,SI20MBA8B10,SI20MBH8-10,SI20SGJ8-21,SI20BZK7D10#,SI20BZK7D10#,SI20BZK7C25,SI20CPA8-10",124,,134,,28,,31,,87,272,"HK1003 -Blackpoint D2 - Rev.0E DD30092021"
1-512,SI--UBF2B60,"(MS3) STEEL STRUCTURE FINAL DIMENSIONS, LOADS AVAILABLE 20UBE/UBF",5121,"HK1003-Rev.0E-3",TT_FinMile,"55902",-,-,-,100,TK_Complete,05/06/2021,05/06/2021,05/06/2021,05/06/2021,"SI20BAT2-60 SS,SI--UBF2-60 FS","SI20BAT2-60,SI--UBF2-60","SI--UBF2B70 FS,SI20UBL2C-55 FS,SI--UBF2-90 FS","SI--UBF2B70,SI20UBL2C-55,SI--UBF2-90",44,44,44,44,10,10,10,10,16,,"HK1003 -Blackpoint D2 - Rev.0E DD30092021"
1-513,SI--HA-2-76,"PROCESS DOCUMENTS FOR RFQ HRSG (App.20.2 - 20.6)",5121,"HK1003-Rev.0E-3",TT_FinMile,"55902",-,-,-,100,TK_Complete,04/09/2020,04/09/2020,04/09/2020,04/09/2020,"SI--HA-2-75 FS,SI--HA-2-81 FF","SI--HA-2-75,SI--HA-2-81","SI--HA-2-05 FS","SI--HA-2-05",4,4,4,4,1,1,1,1,0,,"HK1003 -Blackpoint D2 - Rev.0E DD30092021"
1-514,SI20MB-9-02&,"START HOT COMMISSIONING GT20",5121,"HK1003-Rev.0E-3",TT_Mile,"55902",-,-,-,0,TK_NotStart,01/07/2023,,01/07/2023,,"","","SI20MB-9-15 SS","SI20MB-9-15",152,,152,,35,,35,,99,0,"HK1003 -Blackpoint D2 - Rev.0E DD30092021"
1-515,SI20EKG6H15,"ERECTION, NDT, PT (PT & PIGGING) PIPES / VALVES 20EKG70 (20UEN - GT FUEL GAS PURGE SKID)",5121,"HK1003-Rev.0E-3",TT_Task,"55902",-,-,-,0,TK_NotStart,08/01/2023,,11/02/2023,,"SI20EK-6-21 FS,SI20UEN5-45 FS,SI20MBP6-11 FS,SI20UEY5-45 FF,SI20EK-6-40 FF,SI20UEY5-45 FS,SI20UEY5-100 FS,SI---1P6A05 FS","SI20EK-6-21,SI20UEN5-45,SI20MBP6-11,SI20UEY5-45,SI20EK-6-40,SI20UEY5-45,SI20UEY5-100,SI---1P6A05","SI20EK-7I15 FS,SI20EKT6I15 SS,SI20UEN5D15 FS,SI20EK-8H13 FS,SI20EK-8H14 FS,SI20EKG6I16 FS","SI20EK-7I15,SI20EKT6I15,SI20UEN5D15,SI20EK-8H13,SI20EK-8H14,SI20EKG6I16",127,,132,,29,,30,,88,520,"HK1003 -Blackpoint D2 - Rev.0E DD30092021"
1-516,SI--5552-62,"LIST OF ALL ROOM NUMBERS AVAILABLE",5121,"HK1003-Rev.0E-3",TT_Mile,"55902",-,-,-,100,TK_Complete,02/05/2021,02/05/2021,02/05/2021,02/05/2021,"SI--5552-61 FS","SI--5552-61","SI--5552-63# SS,SI--5552-64 FS,SI--B--2-14 FS","SI--5552-63#,SI--5552-64,SI--B--2-14",39,39,39,39,9,9,9,9,10,,"HK1003 -Blackpoint D2 - Rev.0E DD30092021"
1-517,SI20BTA2-80,"QUOTATION STAGE BATTERIES & RACKS BTA",5121,"HK1003-Rev.0E-3",TT_Task,"55902",-,-,-,88,TK_Active,12/08/2021,12/08/2021,06/10/2021,,"SI20BTA2-75 SS","SI20BTA2-75","SI20BTA2-85 FS","SI20BTA2-85",53,53,61,,12,12,14,,25,720,"HK1003 -Blackpoint D2 - Rev.0E DD30092021"
1-518,SI20BTA2-85,"CONTRACT INTO FORCE BATTERIES & RACKS BTA",5121,"HK1003-Rev.0E-3",TT_Mile,"55902",-,-,-,0,TK_NotStart,07/10/2021,,07/10/2021,,"SI20BTA2-80 FS,SI--UBA2G85 FS","SI20BTA2-80,SI--UBA2G85","SI20BTA3-25 FS,SI20BTA3A25 FS","SI20BTA3-25,SI20BTA3A25",61,,61,,14,,14,,32,720,"HK1003 -Blackpoint D2 - Rev.0E DD30092021"
1-519,SI20BTA2-75,"RFQ BATTERIES & RACKS BTA",5121,"HK1003-Rev.0E-3",TT_Mile,"55902",-,-,-,100,TK_Complete,12/08/2021,12/08/2021,12/08/2021,12/08/2021,"SI20BTA2-15 FS","SI20BTA2-15","SI20BTA2-80 SS","SI20BTA2-80",53,53,53,53,12,12,12,12,25,,"HK1003 -Blackpoint D2 - Rev.0E DD30092021"
1-520,SI20BUK2-75,"RFQ INVERTER, CONVERTER, BATTERY CHARGER BRU/BTL",5121,"HK1003-Rev.0E-3",TT_Mile,"55902",-,-,-,100,TK_Complete,19/08/2021,19/08/2021,19/08/2021,19/08/2021,"SI20BUK2-15 FS","SI20BUK2-15","SI20BUK2-80 FS","SI20BUK2-80",54,54,54,54,12,12,12,12,26,,"HK1003 -Blackpoint D2 - Rev.0E DD30092021"
1-521,SI20MKA6-63,"GENERATOR READY FOR PRE-ASSEMBLING BAA BUSDUCT",5121,"HK1003-Rev.0E-3",TT_Mile,"55902",-,-,-,0,TK_NotStart,09/09/2022,,09/09/2022,,"SI20MKA6E13 FS","SI20MKA6E13","SI20BAA7-05 FS","SI20BAA7-05",109,,109,,25,,25,,80,1856,"HK1003 -Blackpoint D2 - Rev.0E DD30092021"
1-522,SI20MAG6-50,"FITTING OF CONDENSER TO LP TURBINE MAG20",5121,"HK1003-Rev.0E-3",TT_Task,"55902",-,-,-,0,TK_NotStart,02/09/2022,,15/09/2022,,"SI20MAG6-46 FS,SI20MA-6B06 SS","SI20MAG6-46,SI20MA-6B06","SI20MAG6-52 FS","SI20MAG6-52",108,,110,,25,,25,,80,1160,"HK1003 -Blackpoint D2 - Rev.0E DD30092021"
1-523,SI20MAG6-59,"INSULATION CONDENSER MAG20",5121,"HK1003-Rev.0E-3",TT_Task,"55902",-,-,-,0,TK_NotStart,10/10/2022,,20/11/2022,,"SI20MAG6-42 FS,SI20MAG6-58 FS,SI20MAG6-52 FF,SI20MAG5-25 FF","SI20MAG6-42,SI20MAG6-58,SI20MAG6-52,SI20MAG5-25","SI20MAG8-10 FS","SI20MAG8-10",114,,120,,26,,28,,83,1160,"HK1003 -Blackpoint D2 - Rev.0E DD30092021"
1-524,SI20ULA5-45,"(RFE) FOUNDATION 20ULA",5121,"HK1003-Rev.0E-3",TT_Mile,"55902",-,-,-,0,TK_NotStart,07/12/2021,,07/12/2021,,"SI20ULA5-15 FS,SI20ULA5-15.06 FS","SI20ULA5-15,SI20ULA5-15.06","SI20BAW5C23 FS,SI20LCA6M16 FS,SI20LAC6B15 FS,SI20UBA5-45 FS,SI20HB-6A17 FS","SI20BAW5C23,SI20LCA6M16,SI20LAC6B15,SI20UBA5-45,SI20HB-6A17",70,,70,,16,,16,,41,272,"HK1003 -Blackpoint D2 - Rev.0E DD30092021"
1-525,SI20BAW5A15,"ERECTION LIGHTNING PROTECTION 20UHA",5121,"HK1003-Rev.0E-3",TT_Task,"55902",-,-,-,0,TK_NotStart,09/09/2022,,06/10/2022,,"SI--B--2-68 FS,SI20UBA7-25 FS,SI20BAW3-25 FS,SI20UBA7-15 FS,SI20SGY7A15 FS,SI--B--2-93 FS","SI--B--2-68,SI20UBA7-25,SI20BAW3-25,SI20UBA7-15,SI20SGY7A15,SI--B--2-93","SI--BAW8B10 FS,SI20UZJ-99 FF","SI--BAW8B10,SI20UZJ-99",109,,113,,25,,26,,80,1448,"HK1003 -Blackpoint D2 - Rev.0E DD30092021"
1-526,SI20BAW5-15,"ERECTION LIGHTNING PROTECTION 20UBE / UBF",5121,"HK1003-Rev.0E-3",TT_Task,"55902",-,-,-,0,TK_NotStart,24/09/2022,,04/11/2022,,"SI20BAT7-15 FS,SI20BAW3-25 FS","SI20BAT7-15,SI20BAW3-25","SI--BAW8B10 FS","SI--BAW8B10",112,,117,,26,,27,,81,496,"HK1003 -Blackpoint D2 - Rev.0E DD30092021"
1-527,SI20PAB8-05,"(TOP-20PAB) CIRCULATING COOLING WATER SYSTEM",5121,"HK1003-Rev.0E-3",TT_FinMile,"55902",-,-,-,0,TK_NotStart,14/04/2023,,14/04/2023,,"SI20PA-6H70 FS,SI20PAB5-75 FS,SI20PAA6-15 FS,SI20PAR8-06 FS,SI20PAC6-06 FS,SI20BZK7B24 FS,SI20PAC6B15 FS,SI20PAB6A15 FS,SI20PAB5-100 FS,SI20PAB6A17 FS,SI20PAB6A16 FS,SI--9998-23& FS,SI20PB-7A15 FS,SI20PAB5-90 FS","SI20PA-6H70,SI20PAB5-75,SI20PAA6-15,SI20PAR8-06,SI20PAC6-06,SI20BZK7B24,SI20PAC6B15,SI20PAB6A15,SI20PAB5-100,SI20PAB6A17,SI20PAB6A16,SI--9998-23&,SI20PB-7A15,SI20PAB5-90","SI20PAB8-25 FS,SI20PAA8-20 FS,SI20PAD8-56 FS","SI20PAB8-25,SI20PAA8-20,SI20PAD8-56",140,,140,,32,,32,,95,56,"HK1003 -Blackpoint D2 - Rev.0E DD30092021"
1-528,SI20CFE8-13,"(TOP-20CFE) CONTINUOUS EMISSION MONITORING SYSTEM",5121,"HK1003-Rev.0E-3",TT_FinMile,"55902",-,-,-,0,TK_NotStart,15/06/2023,,15/06/2023,,"SI20CFE7A25 FS,SI20CFE7-16 FS","SI20CFE7A25,SI20CFE7-16","SI20CFE8-35 FS,SI20CFE8-35 FF,SI20CFE8-36 FS","SI20CFE8-35,SI20CFE8-35,SI20CFE8-36",149,,149,,34,,34,,98,64,"HK1003 -Blackpoint D2 - Rev.0E DD30092021"
1-529,SI20PCB6M40,"(RFP) READY FOR PIPE CONNECTION SERVICE COOLING WATER EXTRACTION PUMP PCB",5121,"HK1003-Rev.0E-3",TT_FinMile,"55902",-,-,-,0,TK_NotStart,19/06/2022,,19/06/2022,,"SI20PCB6M16 FF,SI20PCB6M10 SS","SI20PCB6M16,SI20PCB6M10","SI20PCB6H15 FS","SI20PCB6H15",98,,98,,22,,22,,70,1312,"HK1003 -Blackpoint D2 - Rev.0E DD30092021"
1-530,SI20BZK7A26,"CABLING LV /MV CABLES GT INTERNAL / TO AUXILIARIES 20UMC",5121,"HK1003-Rev.0E-3",TT_Task,"55902",-,-,-,0,TK_NotStart,15/10/2022,,08/12/2022,,"SI20BZK7-25 FS,SI20BZP7-100 FS,SI--B--7-55 FS,SI20UBA7-25 FF,SI--B--2-68 FS,SI20BZP7-50 FF,SI20BZK4-41 FS,SI20BZP7-140 FF,SI-----1-03 FS,SI20BZK7-25 SS,SI--B--2-93 FS","SI20BZK7-25,SI20BZP7-100,SI--B--7-55,SI20UBA7-25,SI--B--2-68,SI20BZP7-50,SI20BZK4-41,SI20BZP7-140,SI-----1-03,SI20BZK7-25,SI--B--2-93","SI20PAB7A15 SS,SI20MB-7J15 FF,SI20MBP8-10 FS,SI20MBQ7H15 FF,SI20MB-7A15 SS,SI20UMC5D50 FS,SI20MBV6-55 SS,SI20BZK7F26 FF,SI20MB-7H15 FS,SI--2226-55 FF,SI20BZK7D10# FF,SI20BZK7D10# SS,SI20CPA8-10 FS","SI20PAB7A15,SI20MB-7J15,SI20MBP8-10,SI20MBQ7H15,SI20MB-7A15,SI20UMC5D50,SI20MBV6-55,SI20BZK7F26,SI20MB-7H15,SI--2226-55,SI20BZK7D10#,SI20BZK7D10#,SI20CPA8-10",115,,122,,26,,28,,83,904,"HK1003 -Blackpoint D2 - Rev.0E DD30092021"
1-531,SI--2222-26,"REVISED OPERATING MANUAL (BHB) WITH REDMARKS",5121,"HK1003-Rev.0E-3",TT_FinMile,"55902",-,-,-,0,TK_NotStart,31/12/2023,,31/12/2023,,"SI--2222-24 FS,SI--2222-23 FS","SI--2222-24,SI--2222-23","SI-----1-09 FS","SI-----1-09",178,,178,,41,,41,,99,0,"HK1003 -Blackpoint D2 - Rev.0E DD30092021"
1-532,SI--UMX2-70,"DETAIL DESIGN CONCRETE STRUCTURE UMX",5121,"HK1003-Rev.0E-3",TT_Task,"55902",-,-,-,100,TK_Complete,27/07/2021,27/07/2021,09/09/2021,09/09/2021,"SI--UMX2-77 FS,SI--UMX2-60 FS","SI--UMX2-77,SI--UMX2-60","SI--UMX2-50 FF,SI--UMX2-75 FS,SI--UMX2-55 FS,SI-P221-45& SS","SI--UMX2-50,SI--UMX2-75,SI--UMX2-55,SI-P221-45&",51,51,57,57,12,12,13,13,23,,"HK1003 -Blackpoint D2 - Rev.0E DD30092021"
1-533,SI--UMX2-60,"(MS3) CONCRETE STRUCTURE FINAL DIMENSIONS, LOADS AVAILABLE UMX",5121,"HK1003-Rev.0E-3",TT_FinMile,"55902",-,-,-,100,TK_Complete,30/06/2021,30/06/2021,30/06/2021,30/06/2021,"SP20MBR2-60 FS,SP20MBR2-87 FS,SP20MBR2-95 FS","SP20MBR2-60,SP20MBR2-87,SP20MBR2-95","SI--UMX2-70 FS,SI--UMX2-77 FS","SI--UMX2-70,SI--UMX2-77",47,47,47,47,11,11,11,11,19,,"HK1003 -Blackpoint D2 - Rev.0E DD30092021"
1-534,SI--UMX2-50,"PREPARATION FOUNDATION GROUNDING DWGS UMX",5121,"HK1003-Rev.0E-3",TT_Task,"55902",-,-,-,100,TK_Complete,27/08/2021,27/08/2021,09/09/2021,09/09/2021,"SI--UMX2-70 FF,SI--BAW2-02 FS","SI--UMX2-70,SI--BAW2-02","SI--UMX2-75 FS","SI--UMX2-75",55,55,57,57,13,13,13,13,27,,"HK1003 -Blackpoint D2 - Rev.0E DD30092021"
1-535,SI--BBA2-75,"RFQ MV SWITCHGEAR 20/90BBA/BBB",5121,"HK1003-Rev.0E-3",TT_Mile,"55902",-,-,-,100,TK_Complete,01/05/2021,01/05/2021,01/05/2021,01/05/2021,"SI--BBA2-15 FS","SI--BBA2-15","SI--BBA2-80 FS","SI--BBA2-80",39,39,39,39,9,9,9,9,10,,"HK1003 -Blackpoint D2 - Rev.0E DD30092021"
1-536,SI--BBA2-85,"CONTRACT INTO FORCE MV SWITCHGEAR 20/90BBA/BBB",5121,"HK1003-Rev.0E-3",TT_Mile,"55902",-,-,-,100,TK_Complete,14/08/2021,14/08/2021,14/08/2021,14/08/2021,"SI--BBA2-80 FS,SI--UBA2G85 FS,SI--B--2-55 FS","SI--BBA2-80,SI--UBA2G85,SI--B--2-55","SI20BBA3-25 FS","SI20BBA3-25",54,54,54,54,12,12,12,12,25,,"HK1003 -Blackpoint D2 - Rev.0E DD30092021"
1-537,SI20PAC4B25,"TRANSPORT CIRC. CW PUMP 20PAC",5121,"HK1003-Rev.0E-3",TT_Task,"55902",-,-,-,0,TK_NotStart,01/05/2022,,25/06/2022,,"SI20PAC4B10 FS,SI20PAC3B80 FS","SI20PAC4B10,SI20PAC3B80","SI20PAC4B40 FS","SI20PAC4B40",91,,99,,21,,23,,60,384,"HK1003 -Blackpoint D2 - Rev.0E DD30092021"
1-538,SI--GM-2B85,"CONTRACT INTO FORCE SUMP PUMP GM",5121,"HK1003-Rev.0E-3",TT_Mile,"55902",-,-,-,0,TK_NotStart,02/10/2021,,02/10/2021,,"SI--GM-2B80 FS","SI--GM-2B80","SI--GM-3B26 FS,SI--GM-2B70 SS,SI--C--2-55 FS,SI--GM-2B89 FS,SI--GM-2B66 FS,SI--GM-2B60 FS,SI--GM-2B87 FS","SI--GM-3B26,SI--GM-2B70,SI--C--2-55,SI--GM-2B89,SI--GM-2B66,SI--GM-2B60,SI--GM-2B87",61,,61,,14,,14,,31,480,"HK1003 -Blackpoint D2 - Rev.0E DD30092021"
1-539,SI20MB-6-40,"(RFP) READY FOR PIPE CONNECTION GT AUXILIARIES 20MB-",5121,"HK1003-Rev.0E-3",TT_FinMile,"55902",-,-,-,0,TK_NotStart,02/09/2022,,02/09/2022,,"SI20MB-6-15 SS","SI20MB-6-15","SI20MBA6F15 FS,SI20MBQ6H15 FS,SI20MB-6A15 FS","SI20MBA6F15,SI20MBQ6H15,SI20MB-6A15",108,,108,,25,,25,,80,568,"HK1003 -Blackpoint D2 - Rev.0E DD30092021"
1-540,SI20UMC5A10&,"(H) START PLACING FORMWORK TURBOSET FOUNDATION 20UMC",5121,"HK1003-Rev.0E-3",TT_Mile,"55902",-,-,-,100,TK_Complete,26/08/2021,26/08/2021,26/08/2021,26/08/2021,"SI-----5-21& FS","SI-----5-21&","SI20UMC5A10 FS","SI20UMC5A10",55,55,55,55,13,13,13,13,27,,"HK1003 -Blackpoint D2 - Rev.0E DD30092021"
1-541,SI20BZP7-125,"ERECTION CABLE TRAYS HRSG20",5121,"HK1003-Rev.0E-3",TT_Task,"55902",-,-,-,0,TK_NotStart,19/05/2022,,15/06/2022,,"SI--PEE7-20 FS,SI--2227-68 FS,SI--BZP2-05 FS,SI20CJF4-40 FS,SI--BZP4B40 FS,SI20BZP7-26 FS,SI--PEE7-20 SS,SI20HB-6C26 FS","SI--PEE7-20,SI--2227-68,SI--BZP2-05,SI20CJF4-40,SI--BZP4B40,SI20BZP7-26,SI--PEE7-20,SI20HB-6C26","SI20BZK7-130 SS,SI20BZL7G15 FS,SI20BZP7-135 SS,SI20BZP7B10# FF,SI20BZP7B10# SS,SI20BZP7-135 FF,SI20BZP7-186 FS,SI20BZK7-180 FS","SI20BZK7-130,SI20BZL7G15,SI20BZP7-135,SI20BZP7B10#,SI20BZP7B10#,SI20BZP7-135,SI20BZP7-186,SI20BZK7-180",93,,97,,21,,22,,65,856,"HK1003 -Blackpoint D2 - Rev.0E DD30092021"
1-542,SI20BZL8B25,"COMMISSIONING LIGHTING/SMALL POWER INSIDE 20UMC",5121,"HK1003-Rev.0E-3",TT_Task,"55902",-,-,-,0,TK_NotStart,18/04/2023,,24/04/2023,,"SI20BZL8B26 FS,SI20BZL8-10 FS,SI-PM-40 FS","SI20BZL8B26,SI20BZL8-10,SI-PM-40","SI20MA-9-05 FS,SI20MB-8-25 FS","SI20MA-9-05,SI20MB-8-25",141,,142,,33,,33,,95,424,"HK1003 -Blackpoint D2 - Rev.0E DD30092021"
1-543,SI20BZL8-10,"(TOP-20BZL-01) LIGHTING / SMALL POWER 20UMC",5121,"HK1003-Rev.0E-3",TT_FinMile,"55902",-,-,-,0,TK_NotStart,10/04/2023,,10/04/2023,,"SI--9998-20& SS,SI20BZL7F17 FS,SI20BZK7E25 FS,SI20BZL7F15 FS,SI20BZL7F16 FS","SI--9998-20&,SI20BZL7F17,SI20BZK7E25,SI20BZL7F15,SI20BZL7F16","SI20BZL8B25 FS,SI20BZL8B26 FS,SI20BZL8B27 FS","SI20BZL8B25,SI20BZL8B26,SI20BZL8B27",140,,140,,32,,32,,94,424,"HK1003 -Blackpoint D2 - Rev.0E DD30092021"
1-544,SI20PAB5-100,"PRESSURE TEST 20PAB20-PIPES OUTSIDE",5121,"HK1003-Rev.0E-3",TT_Task,"55902",-,-,-,0,TK_NotStart,26/11/2021,,27/11/2021,,"SI20PAB5-85 FS,SI20PAB5-60 FS,SI20PAB5-75 FS,SI20UZ6A40 FF,SI20UZ6A15 FS,SI20PAB5-85.24 FS","SI20PAB5-85,SI20PAB5-60,SI20PAB5-75,SI20UZ6A40,SI20UZ6A15,SI20PAB5-85.24","SI20PAB5-105 FS,SI20PAB5-110 FS,SI20PAB8-05 FS,SI20PAB5-65# FF","SI20PAB5-105,SI20PAB5-110,SI20PAB8-05,SI20PAB5-65#",68,,69,,16,,16,,39,736,"HK1003 -Blackpoint D2 - Rev.0E DD30092021"
1-545,SI--SGA3A80,"(RFS) READY FOR SHIPMENT FIRE FIGHTING RING MAIN SGA",5121,"HK1003-Rev.0E-3",TT_FinMile,"55902",-,-,-,0,TK_NotStart,05/05/2022,,05/05/2022,,"SI--SGA4A10 FS","SI--SGA4A10","SI--SG-2-06 FS,SI--SGA4A25 FS","SI--SG-2-06,SI--SGA4A25",91,,91,,21,,21,,63,208,"HK1003 -Blackpoint D2 - Rev.0E DD30092021"
1-546,SI--GM-2B80,"QUOTATION STAGE SUMP PUMP GM",5121,"HK1003-Rev.0E-3",TT_Task,"55902",-,-,-,99,TK_Active,15/05/2021,15/05/2021,01/10/2021,,"SI--GM-2B75 FS,SI--3332-76 FS","SI--GM-2B75,SI--3332-76","SI--GM-2B85 FS","SI--GM-2B85",41,41,60,,9,9,14,,12,480,"HK1003 -Blackpoint D2 - Rev.0E DD30092021"
1-547,SI20MB-7A15,"ELECTRICAL ERECTION FOR PIPE CLEANING SYSTEM (GT20)",5121,"HK1003-Rev.0E-3",TT_Task,"55902",-,-,-,0,TK_NotStart,22/10/2022,,04/11/2022,,"SI20BZK7A26 SS,SI20MB-6-15 FS","SI20BZK7A26,SI20MB-6-15","SI20MBV8-10 FS,SI20MBV6-55 FS,SI20BZK7D11# FF,SI20BZK7D11# SS","SI20MBV8-10,SI20MBV6-55,SI20BZK7D11#,SI20BZK7D11#",116,,117,,27,,27,,84,896,"HK1003 -Blackpoint D2 - Rev.0E DD30092021"
1-548,SI20UMY5-10,"(H) START PLACING FORMWORK PIPE BRIDGE 20ULY/UMY",5121,"HK1003-Rev.0E-3",TT_Mile,"55902",-,-,-,0,TK_NotStart,15/12/2021,,15/12/2021,,"SI20UMY5-05 FS,SI-----5-21& FS,SI--UMY2-80 FS","SI20UMY5-05,SI-----5-21&,SI--UMY2-80","SI20UMY5-15 FS","SI20UMY5-15",71,,71,,16,,16,,42,160,"HK1003 -Blackpoint D2 - Rev.0E DD30092021"
1-549,SI20UMY5-15,"CONSTRUCTION FOUNDATION PIPE BRIDGE 20ULY/UMY",5121,"HK1003-Rev.0E-3",TT_Task,"55902",-,-,-,0,TK_NotStart,15/12/2021,,03/01/2022,,"SI20UMY5-10 FS","SI20UMY5-10","SI20UMY5-45 FS","SI20UMY5-45",71,,74,,16,,17,,42,160,"HK1003 -Blackpoint D2 - Rev.0E DD30092021"
1-550,SI20SGY7-15,"ERECTION FIRE DETECTION IN 20UMC",5121,"HK1003-Rev.0E-3",TT_Task,"55902",-,-,-,0,TK_NotStart,27/05/2022,,07/07/2022,,"SI--SGY2-05 FS,SI20SGY4A40 FS,SI20SGY4A40 FF,SI20SMM6-70 FS,SI-P222-65 FS","SI--SGY2-05,SI20SGY4A40,SI20SGY4A40,SI20SMM6-70,SI-P222-65","SI20SGA8-26 FS,SI-P222-67 FS","SI20SGA8-26,SI-P222-67",94,,100,,22,,23,,66,2272,"HK1003 -Blackpoint D2 - Rev.0E DD30092021"
1-551,SI20UMY5-45,"(RFE) FOUNDATION PIPE BRIDGE 20ULY/UMY",5121,"HK1003-Rev.0E-3",TT_FinMile,"55902",-,-,-,0,TK_NotStart,03/01/2022,,03/01/2022,,"SI20UMY5-15 FS,SI20UHA5-45 FF","SI20UMY5-15,SI20UHA5-45","SI20UMY6M17 FS,SI20UMY6M18 FS,SI20UMY6M15 FS,SI20UMY6M16 FS,SI20UMY6M11 FS,SI20HB-6A17 FS","SI20UMY6M17,SI20UMY6M18,SI20UMY6M15,SI20UMY6M16,SI20UMY6M11,SI20HB-6A17",74,,74,,17,,17,,44,160,"HK1003 -Blackpoint D2 - Rev.0E DD30092021"
1-552,SI20MBA8-10,"(TOP-20MBA) GAS TURBINE SYSTEM",5121,"HK1003-Rev.0E-3",TT_FinMile,"55902",-,-,-,0,TK_NotStart,27/04/2023,,27/04/2023,,"SI20MPB6E82 FS,SP20MPB4A43 SS,SI20MB-6-20 FS,SP20MB-4A40 FS,SI20MBA6F15 FS,SI20MBA6A15 FS,SI20MBA6-40 FS,SI20MB-6A15 FS,SI20MB-4A25 FS,SI20MBH8-10 FS,SI20MB-7J15 FS,SI20BZK7L25 FS,SI20MB-6-38 FS,SI20MBA8A10 FS,SI20MBA8D10 FS,SI--B--2-68 FS,SI20CYQ8-10 FS,SI20MB-7-20 FS,SI20MB-7H15 FS,SI--1102-10 SS,SI20MBA8B10 FS,SI20UBA4-42 FS,SI20MBV8-10 FS,SI20BZK7F26 FS,SI20UBA7-104 FS,SI20UBA7-17 FS,SI20MBX8-10 FS,SI20MBR8-26 FS,SI20MBV6-55 FS,SI20BZP7-160 FS,SI20MB-6-57 FS,SI20C--7B15 FS,SI20MBX8E10 FS,SI20MBP8-10 FS,SI20MBQ7H15 FS,SI20MB-7-15 FS,SI20MBL8-10 FS,SI--SGM6-15 FS,SI20BZK7F26 FF,SI20MBA8-23& FS,SI20MB-6-58 FS,SI20BZK7-187 FS,SI--B--2-93 FS","SI20MPB6E82,SP20MPB4A43,SI20MB-6-20,SP20MB-4A40,SI20MBA6F15,SI20MBA6A15,SI20MBA6-40,SI20MB-6A15,SI20MB-4A25,SI20MBH8-10,SI20MB-7J15,SI20BZK7L25,SI20MB-6-38,SI20MBA8A10,SI20MBA8D10,SI--B--2-68,SI20CYQ8-10,SI20MB-7-20,SI20MB-7H15,SI--1102-10,SI20MBA8B10,SI20UBA4-42,SI20MBV8-10,SI20BZK7F26,SI20UBA7-104,SI20UBA7-17,SI20MBX8-10,SI20MBR8-26,SI20MBV6-55,SI20BZP7-160,SI20MB-6-57,SI20C--7B15,SI20MBX8E10,SI20MBP8-10,SI20MBQ7H15,SI20MB-7-15,SI20MBL8-10,SI--SGM6-15,SI20BZK7F26,SI20MBA8-23&,SI20MB-6-58,SI20BZK7-187,SI--B--2-93","SI20MBA9-55 SS,SI20MBA8-25 FS,SI20MB-6-20# FS,SI20MBR8-27 FS","SI20MBA9-55,SI20MBA8-25,SI20MB-6-20#,SI20MBR8-27",142,,142,,33,,33,,96,8,"HK1003 -Blackpoint D2 - Rev.0E DD30092021"
1-553,SI20UEN2-90,"DETAIL DESIGN CONCRETE STRUCTURE 01UEN",5121,"HK1003-Rev.0E-3",TT_Task,"55902",-,-,-,87,TK_Active,22/08/2021,22/08/2021,05/10/2021,,"SI20UEN2-12 FS,SI20UEN2-60 FS,SI--UEN2-85 FS,SI--UE-2E37 FS,SI20UEN2-110 FF","SI20UEN2-12,SI20UEN2-60,SI--UEN2-85,SI--UE-2E37,SI20UEN2-110","SI20UEN2-95 FF,SI20UEN2-75 FS,SI20UEN2-99 SS,SI20UEN2D80 FS","SI20UEN2-95,SI20UEN2-75,SI20UEN2-99,SI20UEN2D80",55,55,61,,12,12,14,,27,2096,"HK1003 -Blackpoint D2 - Rev.0E DD30092021"
1-554,SI--1102-20,"PRELIMINARY O&M DOCUMENTATION 20BAA",5121,"HK1003-Rev.0E-3",TT_Mile,"55902",-,-,-,0,TK_NotStart,30/08/2022,,30/08/2022,,"SI20BAA3-25 FS","SI20BAA3-25","SI20BAA7-15 FS","SI20BAA7-15",108,,108,,25,,25,,79,352,"HK1003 -Blackpoint D2 - Rev.0E DD30092021"
1-555,SI20MB-6-10,"PLACING GT20",5121,"HK1003-Rev.0E-3",TT_Mile,"55902",-,-,-,0,TK_NotStart,06/08/2022,,06/08/2022,,"SI20MBL6-06 FS,SI20MB-4-25 FS,SI20MB-6-10& SS,SI20MB-4-40 SS,SI20MBA4-26 FS,SI20MB-6-00 FS,SI20UMC5A45 FS,SI20SMM6-71 FS,SI20MBL6-05 FS,SI20MA-6C11 FS","SI20MBL6-06,SI20MB-4-25,SI20MB-6-10&,SI20MB-4-40,SI20MBA4-26,SI20MB-6-00,SI20UMC5A45,SI20SMM6-71,SI20MBL6-05,SI20MA-6C11","SI20MBA6-16 FS,SI20MB-6-04 SS,SI20XKA7-15 FS,SI20MB-6-20 FS,SI20MB-6-25 FS,SI20MB-6-15# FS,SI20QJ-6B42 FS,SI20MPB6E82 FS,SI20MBL6-15 FS,SI20MB-6-15 FS,SI-PM-30 FS,SI20MKA6E16 SS","SI20MBA6-16,SI20MB-6-04,SI20XKA7-15,SI20MB-6-20,SI20MB-6-25,SI20MB-6-15#,SI20QJ-6B42,SI20MPB6E82,SI20MBL6-15,SI20MB-6-15,SI-PM-30,SI20MKA6E16",105,,105,,24,,24,,76,168,"HK1003 -Blackpoint D2 - Rev.0E DD30092021"
1-556,SI20XKA2-75,"RFQ EMERGENCY DIESEL GEN.SET XKA",5121,"HK1003-Rev.0E-3",TT_Mile,"55902",-,-,-,100,TK_Complete,01/09/2021,01/09/2021,01/09/2021,01/09/2021,"SI20XKA2-15 FS","SI20XKA2-15","SI20XKA2-80 FS","SI20XKA2-80",56,56,56,56,13,13,13,13,28,,"HK1003 -Blackpoint D2 - Rev.0E DD30092021"
1-557,SI20XKA2-80,"QUOTATION STAGE EMERGENCY DIESEL GEN.SET XKA",5121,"HK1003-Rev.0E-3",TT_Task,"55902",-,-,-,69,TK_Active,01/09/2021,01/09/2021,12/10/2021,,"SI20XKA2-75 FS","SI20XKA2-75","SI20XKA2-85 FS","SI20XKA2-85",56,56,62,,13,13,14,,28,520,"HK1003 -Blackpoint D2 - Rev.0E DD30092021"
1-558,SI--BAC2-15,"BASIC DESIGN / SPECIFICATION GEN. CIRCUIT BREAKER BAC",5121,"HK1003-Rev.0E-3",TT_Task,"55902",-,-,-,100,TK_Complete,29/01/2021,29/01/2021,06/05/2021,06/05/2021,"SI--3331-32 FS,SI-----1-03 SS,SI-----1-05 FS","SI--3331-32,SI-----1-03,SI-----1-05","SI--BAC2-75 FS","SI--BAC2-75",25,25,39,39,6,6,9,9,3,,"HK1003 -Blackpoint D2 - Rev.0E DD30092021"
1-559,SI--UBA2-50,"PREPARATION FOUNDATION GROUNDING DWGS UBA7910/7920",5121,"HK1003-Rev.0E-3",TT_Task,"55902",-,-,-,100,TK_Complete,09/08/2021,09/08/2021,22/08/2021,22/08/2021,"SI--UBA2-70 FF,SI--BAW2-02 FS","SI--UBA2-70,SI--BAW2-02","SI--UBA2A75 FS,SI--UBA2-95 FS","SI--UBA2A75,SI--UBA2-95",53,53,55,55,12,12,12,12,25,,"HK1003 -Blackpoint D2 - Rev.0E DD30092021"
1-560,SI20GHD8A50,"SERVICE WATER AVAILABLE (ES AND SC) GHD",5121,"HK1003-Rev.0E-3",TT_Mile,"55902",-,-,-,0,TK_NotStart,05/05/2023,,05/05/2023,,"SI20GHD8A35 FS","SI20GHD8A35","SI20--P6-75 FS","SI20--P6-75",143,,143,,33,,33,,96,64,"HK1003 -Blackpoint D2 - Rev.0E DD30092021"
1-561,SI20GKB8H25,"COLD COMMISSIONING DRINKING WATER DISTRIBUTION SYSTEM GKB",5121,"HK1003-Rev.0E-3",TT_Task,"55902",-,-,-,0,TK_NotStart,29/04/2023,,05/05/2023,,"SI20GKB8A10 FS,SI-PM-40 FS,SI20B--8-52 FS,SI20B--8-50 FS,SI20GM-8E25 FS","SI20GKB8A10,SI-PM-40,SI20B--8-52,SI20B--8-50,SI20GM-8E25","SI20M--9-70 FS","SI20M--9-70",143,,143,,33,,33,,96,456,"HK1003 -Blackpoint D2 - Rev.0E DD30092021"
1-562,SI--C--2-55,"(ICSY3) FINAL LOGICS AND HMI GRAPHICS",5121,"HK1003-Rev.0E-3",TT_FinMile,"55902",-,-,-,0,TK_NotStart,20/12/2021,,20/12/2021,,"SP20CJP2-70 FS,SI20SCA2-70 FS,SI--GM-2B70 FS,SI--GM-2B85 FS,SI--C--2-50 FS,SI--C--2C55 FS,SI20UBA3H55 FS","SP20CJP2-70,SI20SCA2-70,SI--GM-2B70,SI--GM-2B85,SI--C--2-50,SI--C--2C55,SI20UBA3H55","SI--C--2B83 FS,SI--C--2B82 FS,SI--C--2D56 FS,SI--C--2B35 FF,SI--C--2B70 FS,SI--C--2-41 FS","SI--C--2B83,SI--C--2B82,SI--C--2D56,SI--C--2B35,SI--C--2B70,SI--C--2-41",72,,72,,16,,16,,43,1208,"HK1003 -Blackpoint D2 - Rev.0E DD30092021"
1-563,SI20GKB6H15,"ERECTION / PT IN UMC 20GKB-PIPES",5121,"HK1003-Rev.0E-3",TT_Task,"55902",-,-,-,0,TK_NotStart,23/01/2023,,26/02/2023,,"SI20GKB6H16 FF,SI20MBA6D40 FS,SI---5P6A09 FS","SI20GKB6H16,SI20MBA6D40,SI---5P6A09","SI20GKB8A10 FS,SI20TPM5B6-25 SS","SI20GKB8A10,SI20TPM5B6-25",129,,134,,30,,31,,89,944,"HK1003 -Blackpoint D2 - Rev.0E DD30092021"
1-564,SI20PCB8M26,"FINAL COLD COMMISSIONING 20PCB",5121,"HK1003-Rev.0E-3",TT_Task,"55902",-,-,-,0,TK_NotStart,26/05/2023,,15/06/2023,,"SI20PGB8B25 FS,SI20PAB8-25 SS,SI20PCB8M25 FS,SI-P222-145 FS","SI20PGB8B25,SI20PAB8-25,SI20PCB8M25,SI-P222-145","SI20MA-9-05 FS,SI20MB-9-15 FS","SI20MA-9-05,SI20MB-9-15",146,,149,,34,,34,,97,64,"HK1003 -Blackpoint D2 - Rev.0E DD30092021"
1-565,SI20PCB8M25,"COLD COMMISSIONING 20PCB",5121,"HK1003-Rev.0E-3",TT_Task,"55902",-,-,-,0,TK_NotStart,12/05/2023,,25/05/2023,,"SI20PAH8-25 FS,SI20PCB8M10 FS,SI20PAB7A15 FS,SI20PA-6H70 FS,SI20PGB6H17 FS,SI20PGB7H15 FS,SI20PAH6H15 FS,SI20PAH7H15 FS,SI20PAB6A15 FS,SI20PGB6H15 FS,SI20PCB6H15 FS,SI20PCB7H15 FS,SI--9998-23& FS,SI-PM-40 FS,SI20B--8-52 FS,SI20B--8-50 FS","SI20PAH8-25,SI20PCB8M10,SI20PAB7A15,SI20PA-6H70,SI20PGB6H17,SI20PGB7H15,SI20PAH6H15,SI20PAH7H15,SI20PAB6A15,SI20PGB6H15,SI20PCB6H15,SI20PCB7H15,SI--9998-23&,SI-PM-40,SI20B--8-52,SI20B--8-50","SI20PCB8M26 FS","SI20PCB8M26",144,,146,,33,,34,,97,64,"HK1003 -Blackpoint D2 - Rev.0E DD30092021"
1-566,SI20PCB8M10,"(TOP-20PCB) SERVICE COOLING WATER PUMPS",5121,"HK1003-Rev.0E-3",TT_FinMile,"55902",-,-,-,0,TK_NotStart,14/04/2023,,14/04/2023,,"SI20BZK7E25 FS,SI20PCB6M10 FS,SI20PCB7M15 FS,SI20PAB7A15 FS,SI20PA-6H70 FS,SI20PGB6H17 FS,SI20PGB7H15 FS,SI20PAH6H15 FS,SI20PAH7H15 FS,SI20PAB6A15 FS,SI20PGB6H15 FS,SI20PCB6H15 FS,SI20PCB7H15 FS,SI--9998-23& FS","SI20BZK7E25,SI20PCB6M10,SI20PCB7M15,SI20PAB7A15,SI20PA-6H70,SI20PGB6H17,SI20PGB7H15,SI20PAH6H15,SI20PAH7H15,SI20PAB6A15,SI20PGB6H15,SI20PCB6H15,SI20PCB7H15,SI--9998-23&","SI20PCB8M25 FS","SI20PCB8M25",140,,140,,32,,32,,95,280,"HK1003 -Blackpoint D2 - Rev.0E DD30092021"
1-567,SI20PCB6M10,"PIPING WORKS FOR PCB SYSTEM - INTERNAL PIPIES",5121,"HK1003-Rev.0E-3",TT_Task,"55902",-,-,-,0,TK_NotStart,13/06/2022,,10/07/2022,,"SI20PGB6M16 FS,SI20PGB6M15 FS,SI---1P6A05 FS","SI20PGB6M16,SI20PGB6M15,SI---1P6A05","SI20PCB8M10 FS,SI20PCB6M40 SS,SI20PCB7M15 FS","SI20PCB8M10,SI20PCB6M40,SI20PCB7M15",97,,101,,22,,23,,69,1312,"HK1003 -Blackpoint D2 - Rev.0E DD30092021"
1-568,SI20PAH6-40,"(RFP) READY FOR PIPE CONNECTION CONDENSER TUBE CLEANING SYSTEM 20PAH",5121,"HK1003-Rev.0E-3",TT_FinMile,"55902",-,-,-,0,TK_NotStart,27/08/2022,,27/08/2022,,"SI20PAH6-15 SS,SI20UPY4M40 SS","SI20PAH6-15,SI20UPY4M40","SI20PAH6H15 FS","SI20PAH6H15",108,,108,,25,,25,,79,1272,"HK1003 -Blackpoint D2 - Rev.0E DD30092021"
1-569,SI20SGY4A40,"(OTD-OS) ON SITE FIRE FIGHTING DETECTION SYSTEM SGY",5121,"HK1003-Rev.0E-3",TT_FinMile,"55902",-,-,-,0,TK_NotStart,26/05/2022,,26/05/2022,,"SI20SGY4A25 FS","SI20SGY4A25","SI20SGY7A15 FS,SI20SGY6-22 FS,SI20SGY7-17 FS,SI20SGY7-15 FS,SI20SGY7-15 FF,SI20SGY7A30 FS,SI20SGY7A19 FS,SI20SGY7A20 FS,SI20SGY7A18 FS,SI20SGY7A21 FS,SI20SGY7A22 FS,SI20SGY7A29 FS,SI20SGY7-17 FF,SI20SGY7-18 FS,SI20SGY7A26 FS,SI20SGY7A16 FS,SI20SGY6-22 FF,SI20SGY7-19 FS,SI20SGY7A24 FS,SI20SGY7A25 FS,SI20SGY7A23 FS,SI20SGY7A28 FS,SI20SGY7A27 FS,SI20SGY7A15 FF,SI20SGY7A17 FS,SI20SGY7A31 FS,SI20SGY8A25 FS","SI20SGY7A15,SI20SGY6-22,SI20SGY7-17,SI20SGY7-15,SI20SGY7-15,SI20SGY7A30,SI20SGY7A19,SI20SGY7A20,SI20SGY7A18,SI20SGY7A21,SI20SGY7A22,SI20SGY7A29,SI20SGY7-17,SI20SGY7-18,SI20SGY7A26,SI20SGY7A16,SI20SGY6-22,SI20SGY7-19,SI20SGY7A24,SI20SGY7A25,SI20SGY7A23,SI20SGY7A28,SI20SGY7A27,SI20SGY7A15,SI20SGY7A17,SI20SGY7A31,SI20SGY8A25",94,,94,,22,,22,,66,1952,"HK1003 -Blackpoint D2 - Rev.0E DD30092021"
1-570,SI20UBA3G55,"INSTALL. COMP., INT. CABLING, FIRE PROT., SHOP TEST ELECTRICAL MODULES 20UBA1110/20",5121,"HK1003-Rev.0E-3",TT_Task,"55902",-,-,-,0,TK_NotStart,16/06/2022,,01/09/2022,,"SP--B--2-13 FS,SI20UBA4-69 FS,SI20BR2-30 FS,SI20UBA3G57 FF","SP--B--2-13,SI20UBA4-69,SI20BR2-30,SI20UBA3G57","SI20UBA3L20# FF,SI20UBA3B76 FS","SI20UBA3L20#,SI20UBA3B76",97,,108,,22,,25,,69,216,"HK1003 -Blackpoint D2 - Rev.0E DD30092021"
1-571,SI20UBA3L25,"MANUFACTURING ELECTRICAL MODULES 20UBA1110/20",5121,"HK1003-Rev.0E-3",TT_Task,"55902",-,-,-,0,TK_NotStart,27/01/2022,,15/06/2022,,"SI--BFF2-85 FS,SI--HA-2-85 FS,SI--2222-30 FS","SI--BFF2-85,SI--HA-2-85,SI--2222-30","SI20UBA3L20# SS,SI20UBA4-69 FS,SI20UBA2G78 SS","SI20UBA3L20#,SI20UBA4-69,SI20UBA2G78",77,,97,,18,,22,,47,216,"HK1003 -Blackpoint D2 - Rev.0E DD30092021"
1-572,SI20CPC8-25,"COMMISSIONING ET200 STATIONS HRSG20 CPC",5121,"HK1003-Rev.0E-3",TT_Task,"55902",-,-,-,0,TK_NotStart,11/04/2023,,17/04/2023,,"SI20CPC8A10 FS,SI20CJ-8-25 FS,SI20B--8-50 FS,SI-PM-40 FS,SI20CPA8-25 FS","SI20CPC8A10,SI20CJ-8-25,SI20B--8-50,SI-PM-40,SI20CPA8-25","SI20HB-8-25 FS,SI20CPC8A25 FS,SI20HA-8-25 FS,SI20HAD8F25 FS,SI20HAD8E25 FS,SI20HAD8G25 FS,SI20HSJ8-26 FS","SI20HB-8-25,SI20CPC8A25,SI20HA-8-25,SI20HAD8F25,SI20HAD8E25,SI20HAD8G25,SI20HSJ8-26",140,,141,,32,,32,,94,32,"HK1003 -Blackpoint D2 - Rev.0E DD30092021"
1-573,SI20CPB8A30,"I&C FIELD COMMISSIONING ST",5121,"HK1003-Rev.0E-3",TT_Task,"55902",-,-,-,0,TK_NotStart,18/04/2023,,19/06/2023,,"SI20CPB8-25 FS","SI20CPB8-25","SI20M--9-50 FS,SI20SGC8-37 SS","SI20M--9-50,SI20SGC8-37",141,,150,,33,,35,,95,88,"HK1003 -Blackpoint D2 - Rev.0E DD30092021"
1-574,SI20MAN8-10,"(TOP-20MAN) ST BYPASS SYSTEM",5121,"HK1003-Rev.0E-3",TT_FinMile,"55902",-,-,-,0,TK_NotStart,10/04/2023,,10/04/2023,,"SI20MA-6D70 FS,SI20MAA6A15 FS,SI20MA-6D45 FS,SI20MAN6H15 FS,SI20BZK7C33 FS,SI20MAN7H15 FS,SI20BZK7-28 FS,SI20MAD8-26& FS","SI20MA-6D70,SI20MAA6A15,SI20MA-6D45,SI20MAN6H15,SI20BZK7C33,SI20MAN7H15,SI20BZK7-28,SI20MAD8-26&","SI20MA-8-25 FS,SI20MAN8-25 FS,SI20MA-8-10 FS","SI20MA-8-25,SI20MAN8-25,SI20MA-8-10",140,,140,,32,,32,,94,32,"HK1003 -Blackpoint D2 - Rev.0E DD30092021"
1-575,SI--B--7-55,"PULLING DATA PREPARATION ON SITE (BOP SYSTEMS)",5121,"HK1003-Rev.0E-3",TT_Task,"55902",-,-,-,0,TK_NotStart,20/04/2022,,03/05/2022,,"SI--BZK2-81 FS,SI--B--2-68 FS,SI--B--2-93 FS","SI--BZK2-81,SI--B--2-68,SI--B--2-93","SI20CFE7A25 FS,SI20BZK7B32 FS,SI20BZK7-28 FS,SI20BZK7F25 FS,SI20BZK7C33 FS,SI20BZK7L25 FS,SI20BZK7A25 FS,SI20BZK7C25 FS,SI20BZK7A27 FS,SI20BZK7B24 FS,SI20BZK7E25 FS,SI20UBA7-104 FS,SI20BZK7B27 FS,SI20UBA7-25 FS,SI20BZK7A26 FS,SI20BZK7D25 FS,SI20BZK7-25 FS,SI20BZK7F26 FS,SI20BZK7B26 FS,SI--BRU8-22 FS,SI20CR-8-10 FS,SI20UBA8-12 FS,SI--2226-55 FS,SI--2222-35 FS,SI20CPB8-25 FS,SI20MKA8-10 FS,SI20UMC5D50 FS","SI20CFE7A25,SI20BZK7B32,SI20BZK7-28,SI20BZK7F25,SI20BZK7C33,SI20BZK7L25,SI20BZK7A25,SI20BZK7C25,SI20BZK7A27,SI20BZK7B24,SI20BZK7E25,SI20UBA7-104,SI20BZK7B27,SI20UBA7-25,SI20BZK7A26,SI20BZK7D25,SI20BZK7-25,SI20BZK7F26,SI20BZK7B26,SI--BRU8-22,SI20CR-8-10,SI20UBA8-12,SI--2226-55,SI--2222-35,SI20CPB8-25,SI20MKA8-10,SI20UMC5D50",89,,91,,20,,21,,58,696,"HK1003 -Blackpoint D2 - Rev.0E DD30092021"
1-576,SI20UBA3J80,"(RFS) READY FOR SHIPMENT ELECTRICAL MODULES 20UBA7610/20",5121,"HK1003-Rev.0E-3",TT_FinMile,"55902",-,-,-,0,TK_NotStart,01/05/2022,,01/05/2022,,"SI20UBA4B10 FS","SI20UBA4B10","SI20UBA4J25 FS","SI20UBA4J25",91,,91,,21,,21,,60,768,"HK1003 -Blackpoint D2 - Rev.0E DD30092021"
1-577,SI20UBA4J50,"(ET4b) ELECTRICAL MODULES AT WORKSHOP READY FOR COMPONENT INSTALLATION ELECTRICAL MODULES 20UBA7610/20",5121,"HK1003-Rev.0E-3",TT_Mile,"55902",-,-,-,0,TK_NotStart,24/01/2022,,24/01/2022,,"SI20BBA4-10 FS","SI20BBA4-10","SI20UBA3J55 FS","SI20UBA3J55",77,,77,,18,,18,,46,768,"HK1003 -Blackpoint D2 - Rev.0E DD30092021"
1-578,SP--SGJ2-10,"SYSTEM DESCRIPTION FIRE FIGHTING / GAS DETECTION SGJ / CYQ / CYE",5121,"HK1003-Rev.0E-3",TT_Mile,"55902",-,-,-,100,TK_Complete,19/02/2021,19/02/2021,19/02/2021,19/02/2021,"SI-----1-04 SS,SI-----1-05 FS","SI-----1-04,SI-----1-05","SP--SGJ2-11 FS,SI--M--2D20 SS,SP--SGJ2-03 FS","SP--SGJ2-11,SI--M--2D20,SP--SGJ2-03",28,28,28,28,6,6,6,6,5,,"HK1003 -Blackpoint D2 - Rev.0E DD30092021"
1-579,SP--SGJ2-87,"INSPECTION PLAN FIRE FIGHTING / GAS DETECTION SGJ / CYQ / CYE",5121,"HK1003-Rev.0E-3",TT_Mile,"55902",-,-,-,100,TK_Complete,16/07/2021,16/07/2021,16/07/2021,16/07/2021,"SP--SGJ2-85 SS","SP--SGJ2-85","SP20SGJ4-80 SS","SP20SGJ4-80",49,49,49,49,11,11,11,11,22,,"HK1003 -Blackpoint D2 - Rev.0E DD30092021"
1-580,SI--BAW8B10,"(TOP-20BAW-03) LIGHTNING PROTECTION",5121,"HK1003-Rev.0E-3",TT_FinMile,"55902",-,-,-,0,TK_NotStart,02/02/2023,,02/02/2023,,"SI20BAW5A15 FS,SI20BAW5C21 FS,SI20BAW5-15 FS","SI20BAW5A15,SI20BAW5C21,SI20BAW5-15","SI20M--9-60 FS,SI20B--8-50 FS","SI20M--9-60,SI20B--8-50",130,,130,,30,,30,,89,496,"HK1003 -Blackpoint D2 - Rev.0E DD30092021"
1-581,SI--BAW8-10,"(TOP-20BAW-02) PLANT EARTHING GRID COMPLETE",5121,"HK1003-Rev.0E-3",TT_FinMile,"55902",-,-,-,0,TK_NotStart,02/07/2023,,02/07/2023,,"SI20BAW5C17 FS,SI20BAW5C23 FS,SI20BAW5B15 FS,SI20BAW5A18 FS,SI20BAW5A16 FS,SI20BAW5C16 FS,SI20BAW5C22 FS,SI20BAW5B16 FS,SI20BAW5C24 FS","SI20BAW5C17,SI20BAW5C23,SI20BAW5B15,SI20BAW5A18,SI20BAW5A16,SI20BAW5C16,SI20BAW5C22,SI20BAW5B16,SI20BAW5C24","SI20HA-9A45 FS","SI20HA-9A45",152,,152,,35,,35,,99,0,"HK1003 -Blackpoint D2 - Rev.0E DD30092021"
1-582,SI20UHX2-10,"(MS3) CONCRETE STRUCTURE FINAL DIMENSIONS, LOADS AVAILABLE 20UHX",5121,"HK1003-Rev.0E-3",TT_FinMile,"55902",-,-,-,100,TK_Complete,24/07/2021,24/07/2021,24/07/2021,24/07/2021,"SI20QU-2-60 FS","SI20QU-2-60","SI20UHX2-5 FS,SI20UHX2-15 FS","SI20UHX2-5,SI20UHX2-15",51,51,51,51,11,11,11,11,23,,"HK1003 -Blackpoint D2 - Rev.0E DD30092021"
1-583,SI20BFA8-35,"FEEDER COMMISSIONING LV SWITCHGEAR 20BFA / BMA / BFB",5121,"HK1003-Rev.0E-3",TT_Task,"55902",-,-,-,0,TK_NotStart,11/04/2023,,29/05/2023,,"SI20BFG8-50 FS,SI20BFA8-25 FS,SI20BUK8-50 FS,SI20B--8-50 FS","SI20BFG8-50,SI20BFA8-25,SI20BUK8-50,SI20B--8-50","SI20BZL8B26 SS,SI20S--8-25 SS,SI20GM-8E25 SS,SI20BZL8-25 SS","SI20BZL8B26,SI20S--8-25,SI20GM-8E25,SI20BZL8-25",140,,147,,32,,34,,94,136,"HK1003 -Blackpoint D2 - Rev.0E DD30092021"
1-584,SI20BFA8-25,"COMMISSIONING LV SWITCHGEAR 20BFA / BMA / BFB",5121,"HK1003-Rev.0E-3",TT_Task,"55902",-,-,-,0,TK_NotStart,07/02/2023,,13/02/2023,,"SI20BFA8-36 FS,SI20BFA8-10 FS,SI-PM-40 FS,SI20UBA8G30 SS","SI20BFA8-36,SI20BFA8-10,SI-PM-40,SI20UBA8G30","SI20BFA8-35 FS,SI--BRU8-21 FF,SI20CH-8A25 FS,SI20BAC8-26 FS,SI20UBA8G27 SS,SI20BFG8-50 FS,SI20CPC8-27 FS,SI20BBA8-25 FS,SI20CJ-8-25 FS,SI20CHA8-25 FS,SI20BBT8-25 FS,SI20CJT8-20 FS,SI20MKC8-75 FS,SI20MKC8-76 FS,SI20BBA8-36 FS,SI20BU-8-25 FS,SI20GM-8B25 FS,SI20GM-8B27 FS,SI20GM-8E25 FS,SI20UVM-8E27 FS,SI20UBA8G29 FS","SI20BFA8-35,SI--BRU8-21,SI20CH-8A25,SI20BAC8-26,SI20UBA8G27,SI20BFG8-50,SI20CPC8-27,SI20BBA8-25,SI20CJ-8-25,SI20CHA8-25,SI20BBT8-25,SI20CJT8-20,SI20MKC8-75,SI20MKC8-76,SI20BBA8-36,SI20BU-8-25,SI20GM-8B25,SI20GM-8B27,SI20GM-8E25,SI20UVM-8E27,SI20UBA8G29",131,,132,,30,,30,,89,16,"HK1003 -Blackpoint D2 - Rev.0E DD30092021"
1-585,SI--C--3E27,"DETAIL DESIGN / MANUFACTURING/ SHOP TEST FOR BOP I&C FIELD DEVICES",5121,"HK1003-Rev.0E-3",TT_Task,"55902",-,-,-,45,TK_Active,15/05/2021,15/05/2021,15/03/2022,,"SI--C--2C55 FF,SI--C--2A70 FF,SI--C--2-85 FS,SI--C--3E86 FS","SI--C--2C55,SI--C--2A70,SI--C--2-85,SI--C--3E86","SI--C--2E84 SS,SI--C--3-70 FS","SI--C--2E84,SI--C--3-70",41,41,84,,9,9,19,,12,1312,"HK1003 -Blackpoint D2 - Rev.0E DD30092021"
1-586,SI20HB-3D26,"MANUFACTURING STACK HRSG 20",5121,"HK1003-Rev.0E-3",TT_Task,"55902",-,-,-,63,TK_Active,11/04/2021,11/04/2021,10/01/2022,,"SI20HB-3F26 SS,SI20HB-3D25 FS","SI20HB-3F26,SI20HB-3D25","SI20HB-3B74 FS","SI20HB-3B74",36,36,75,,8,8,17,,8,376,"HK1003 -Blackpoint D2 - Rev.0E DD30092021"
1-587,SI20UBA8G26,"ELECTRICAL COMMISSIONING 20UBA8110/20",5121,"HK1003-Rev.0E-3",TT_Task,"55902",-,-,-,0,TK_NotStart,11/04/2023,,17/04/2023,,"SI--C--2B83 FS,SI20UBA8-11 FS,SI--2222-35 FS,SI--C--2-41 FS,SI20BBA8-37 SS,SI20SGC8-26 FS,SI20B--8-50 FS","SI--C--2B83,SI20UBA8-11,SI--2222-35,SI--C--2-41,SI20BBA8-37,SI20SGC8-26,SI20B--8-50","SI20UBA8-50 FS,SI20HA-9A45 FS,SI20BFC8-25 FS","SI20UBA8-50,SI20HA-9A45,SI20BFC8-25",140,,141,,32,,32,,94,48,"HK1003 -Blackpoint D2 - Rev.0E DD30092021"
1-588,SP--CJJ2-38,"ST PREL. INPUT FOR I&C UNIT COORDINATION (incl. Final SREL)",5121,"HK1003-Rev.0E-3",TT_FinMile,"55902",-,-,-,100,TK_Complete,16/09/2021,16/09/2021,16/09/2021,16/09/2021,"SP--MB-2-86 SS","SP--MB-2-86","SI--C--2B83 FS,SI--C--2B70 FS,SI--C--2-40 FF","SI--C--2B83,SI--C--2B70,SI--C--2-40",58,58,58,58,13,13,13,13,29,,"HK1003 -Blackpoint D2 - Rev.0E DD30092021"
1-589,SI--C--2A40,"HW ENGINEERING BOP I&C",5121,"HK1003-Rev.0E-3",TT_Task,"55902",-,-,-,78,TK_Active,09/04/2021,09/04/2021,18/11/2021,,"SI--C--2-85 FS","SI--C--2-85","SI--C--2A70 FS,SI20CJ-3-20 FS,SI20CJ-3-21 SS,SI--C--2B00 SS,SI20CJ-3-54 FS","SI--C--2A70,SI20CJ-3-20,SI20CJ-3-21,SI--C--2B00,SI20CJ-3-54",35,35,67,,8,8,15,,7,1632,"HK1003 -Blackpoint D2 - Rev.0E DD30092021"
1-590,SI--C--2B35,"SW ENGINEERING BOP I&C, T3000 DB MERGING Fail Safe",5121,"HK1003-Rev.0E-3",TT_Task,"55902",-,-,-,11,TK_Active,19/09/2021,19/09/2021,25/12/2021,,"SI--C--2-50 SS,SI--C--2-55 FF","SI--C--2-50,SI--C--2-55","SI--C--2B83 FS,SI--C--2C71 FS,SI--C--2B82 FS,SI--C--2D56 FF,SI--C--2B70 FS,SI--C--2-41 FS,SI--C--2-40 FF,SI--L--2-29 SS,SI--P--2-29 SS","SI--C--2B83,SI--C--2C71,SI--C--2B82,SI--C--2D56,SI--C--2B70,SI--C--2-41,SI--C--2-40,SI--L--2-29,SI--P--2-29",59,59,73,,13,13,17,,29,1160,"HK1003 -Blackpoint D2 - Rev.0E DD30092021"
1-591,SI--UMC2A60,"(MS3) CONCRETE STRUCTURE FINAL DIMENSIONS, LOADS AVAILABLE TS FOUND. 20UMC",5121,"HK1003-Rev.0E-3",TT_FinMile,"55902",-,-,-,100,TK_Complete,05/02/2021,05/02/2021,05/02/2021,05/02/2021,"SI-----1-05 FS,SP--MB-2-85 FS","SI-----1-05,SP--MB-2-85","SI--UMC2A70 FS,SI20UMC2B10 FS","SI--UMC2A70,SI20UMC2B10",26,26,26,26,6,6,6,6,4,,"HK1003 -Blackpoint D2 - Rev.0E DD30092021"
1-592,SI20M--9-70,"COMBINED CYCLE POWER PLANT LOAD TESTS - MAIN GAS",5121,"HK1003-Rev.0E-3",TT_Task,"55902",-,-,-,0,TK_NotStart,01/08/2023,,29/09/2023,,"SI20GKB8H25 FS,SI20CPC8-27 FS,SI20CPD8-35 FS,SI20M--9-60 SS,SI20MA-9-05 FS,SI--2226-58 FF,SI20CHA8-11 FS,SI20MKA8-10 FS,SI20CH-8-25 FS,SI20BBA8-35 FS,SI-PM-40 FS,SI20B--8-50 FS,SI20TPM5A8-30 FS,SI20TPM5B8-30 FS,SI20TPM6A8-30 FS","SI20GKB8H25,SI20CPC8-27,SI20CPD8-35,SI20M--9-60,SI20MA-9-05,SI--2226-58,SI20CHA8-11,SI20MKA8-10,SI20CH-8-25,SI20BBA8-35,SI-PM-40,SI20B--8-50,SI20TPM5A8-30,SI20TPM5B8-30,SI20TPM6A8-30","SI20M--9-10 FS,SI20M--9-75 FS","SI20M--9-10,SI20M--9-75",156,,164,,36,,38,,99,0,"HK1003 -Blackpoint D2 - Rev.0E DD30092021"
1-593,SI20MBV6-55&,"START LUBE OIL FLUSHING GT20",5121,"HK1003-Rev.0E-3",TT_Mile,"55902",-,-,-,0,TK_NotStart,24/02/2023,,24/02/2023,,"SI20MB-6-15# FS","SI20MB-6-15#","SI20MBV6-55 SS","SI20MBV6-55",133,,133,,31,,31,,91,8,"HK1003 -Blackpoint D2 - Rev.0E DD30092021"
1-594,SI20BZL7-38,"LIGHTING AND SMALL POWER INSTALLATION UBF/UBN",5121,"HK1003-Rev.0E-3",TT_Task,"55902",-,-,-,0,TK_NotStart,14/12/2022,,10/01/2023,,"SI--BZL2-05 FS,SI20UBA7-104 SS,SI20BAT7-15 FS,SI20UBF5D45 FS,SI20UBA7-17 SS,SI20UBF5E45 FS,SI--BZL4-40 FS,SI20BZK7A28 FS","SI--BZL2-05,SI20UBA7-104,SI20BAT7-15,SI20UBF5D45,SI20UBA7-17,SI20UBF5E45,SI--BZL4-40,SI20BZK7A28","SI20BZL8B12 FS,SI20BZL7-16# FF,SI20BZL7-16# SS,SI20BZK7F29 FF","SI20BZL8B12,SI20BZL7-16#,SI20BZL7-16#,SI20BZK7F29",123,,127,,28,,29,,87,1368,"HK1003 -Blackpoint D2 - Rev.0E DD30092021"
1-595,SI20MA-6-30,"ALIGNMENT FRONT & REAR HP-BEARING PEDESTALS TO DRAWING AND DEFLECTION CURVE MA",5121,"HK1003-Rev.0E-3",TT_Task,"55902",-,-,-,0,TK_NotStart,01/07/2022,,09/07/2022,,"SI20MA-6-07 FS","SI20MA-6-07","SI20MA-5-26 FS,SI20MA-6A17# FF,SI20LBF6H47 FS","SI20MA-5-26,SI20MA-6A17#,SI20LBF6H47",99,,101,,23,,23,,72,80,"HK1003 -Blackpoint D2 - Rev.0E DD30092021"
1-596,SI20UBN5-20,"(RFE) FOUNDATION 20UBN",5121,"HK1003-Rev.0E-3",TT_FinMile,"55902",-,-,-,0,TK_NotStart,11/08/2022,,11/08/2022,,"SI20UBN5-10 FS,SI20UBN5-10.03 FS","SI20UBN5-10,SI20UBN5-10.03","SI20XKA7-15 FS,SI20UBN5B12 FS,SI-P222-78 FS","SI20XKA7-15,SI20UBN5B12,SI-P222-78",105,,105,,24,,24,,77,560,"HK1003 -Blackpoint D2 - Rev.0E DD30092021"
1-597,SI--C--2-41,"ENGINEERING FUP'S UNIT COORDINATION",5121,"HK1003-Rev.0E-3",TT_Task,"55902",-,-,-,0,TK_NotStart,15/01/2022,,31/07/2022,,"SI--C--2B35 FS,SI--C--2-55 FS,SI--C--2B70 FS,SI--C--2-40 FS","SI--C--2B35,SI--C--2-55,SI--C--2B70,SI--C--2-40","SI--C--2C71 FS,SI20UBA8G26 FS,SI20BU-8-25 FS,SI--BRU8-21 FS","SI--C--2C71,SI20UBA8G26,SI20BU-8-25,SI--BRU8-21",76,,104,,17,,24,,45,1144,"HK1003 -Blackpoint D2 - Rev.0E DD30092021"
1-598,SI--BAA2-75,"RFQ IPB BAA",5121,"HK1003-Rev.0E-3",TT_Mile,"55902",-,-,-,100,TK_Complete,19/03/2021,19/03/2021,19/03/2021,19/03/2021,"SI--BAA2-15 FS","SI--BAA2-15","SI--BAA2-80 FS","SI--BAA2-80",32,32,32,32,7,7,7,7,6,,"HK1003 -Blackpoint D2 - Rev.0E DD30092021"
1-599,SI--CP-3-25,"DETAIL DESIGN / MANUFACTURING/ SHOP TEST FOR BOP I&C FIELD CABINETS",5121,"HK1003-Rev.0E-3",TT_Task,"55902",-,-,-,21,TK_Active,30/07/2021,30/07/2021,20/05/2022,,"SI--C--2C55 FS,SI--C--2C50 FS,SI--C--2A70 FF,SI--C--2-85 FS,SI--C--3E86 FS,SI--C--2C55 FF","SI--C--2C55,SI--C--2C50,SI--C--2A70,SI--C--2-85,SI--C--3E86,SI--C--2C55","SI--CP-3-70 FS","SI--CP-3-70",51,51,93,,12,12,21,,23,784,"HK1003 -Blackpoint D2 - Rev.0E DD30092021"
1-600,SP20MB-2-85,"CONTRACT INTO FORCE GT ACCESSORY EQUIPMENT / CCR / IN-LINE COMPONENTS GT-PIPING MB",5121,"HK1003-Rev.0E-3",TT_Mile,"55902",-,-,-,0,TK_NotStart,27/11/2021,,27/11/2021,,"SP--MBK2-85 FS,SP20MB-2-81 FS","SP--MBK2-85,SP20MB-2-81","SP20MB-3-251 FS","SP20MB-3-251",69,,69,,16,,16,,39,504,"HK1003 -Blackpoint D2 - Rev.0E DD30092021"
1-601,SP20MB-2-81,"QUOTATION STAGE GT ACCESSORY EQUIPMENT / CCR / IN-LINE COMPONENTS GT-PIPING MB",5121,"HK1003-Rev.0E-3",TT_Task,"55902",-,-,-,0,TK_NotStart,16/10/2021,,26/11/2021,,"SP20MB-2-80 FS","SP20MB-2-80","SP20MB-2-85 FS","SP20MB-2-85",63,,68,,14,,16,,34,504,"HK1003 -Blackpoint D2 - Rev.0E DD30092021"
1-602,SI--LCB2B20,"CONFIRMED PUMP CURVES CONDENSATE EXTRACTION LCB-PUMP",5121,"HK1003-Rev.0E-3",TT_Mile,"55902",-,-,-,100,TK_Complete,14/05/2021,14/05/2021,14/05/2021,14/05/2021,"SI-----2M30 FS,SI--LCB2B75 FS,SI-----1-01 SS,SI--LCB2B85 FS","SI-----2M30,SI--LCB2B75,SI-----1-01,SI--LCB2B85","SI--L--2I45 SS","SI--L--2I45",40,40,40,40,9,9,9,9,12,,"HK1003 -Blackpoint D2 - Rev.0E DD30092021"
1-603,SI--LCB2B85,"CONTRACT INTO FORCE CONDENSATE EXTRACTION PUMP LCB",5121,"HK1003-Rev.0E-3",TT_Mile,"55902",-,-,-,100,TK_Complete,09/04/2021,09/04/2021,09/04/2021,09/04/2021,"SI--LCB2B80 FS","SI--LCB2B80","SI--LCB2B65 FS,SI--LCB2B60 FS,SI20LCB3B28 FS,SI--LCB2B86 FS,SI--LCB2B20 FS","SI--LCB2B65,SI--LCB2B60,SI20LCB3B28,SI--LCB2B86,SI--LCB2B20",35,35,35,35,8,8,8,8,7,,"HK1003 -Blackpoint D2 - Rev.0E DD30092021"
1-604,SI20MB-9A15&,"1ST. IGNITION GT",5121,"HK1003-Rev.0E-3",TT_Mile,"55902",-,-,-,0,TK_NotStart,01/07/2023,,01/07/2023,,"SI20PUR8-25 FS","SI20PUR8-25","SI20---9-00# SS,SI20MB-9-15 SS","SI20---9-00#,SI20MB-9-15",152,,152,,35,,35,,99,0,"HK1003 -Blackpoint D2 - Rev.0E DD30092021"
1-605,SI20MA-8-60&,"INITIAL STEAM ADMISSION FOR ST20",5121,"HK1003-Rev.0E-3",TT_Mile,"55902",-,-,-,0,TK_NotStart,01/08/2023,,01/08/2023,,"","","SI20M--9-60 SS","SI20M--9-60",156,,156,,36,,36,,99,0,"HK1003 -Blackpoint D2 - Rev.0E DD30092021"
1-606,SI20MB-8E25,"COLD COMMISSIONING GT20 SYSTEMS MBA 20MBP",5121,"HK1003-Rev.0E-3",TT_Task,"55902",-,-,-,0,TK_NotStart,19/05/2023,,25/05/2023,,"SI20MBX8E25 FS,SI20EK-8H13 FS,SI20MBP8-10 FS,SI20MBV8-10 FS,SI20MBA8-25 SS,SI-PM-40 FS,SI20B--8-50 FS,SI20B--8-52 FS,SI20PGB8B25 FS","SI20MBX8E25,SI20EK-8H13,SI20MBP8-10,SI20MBV8-10,SI20MBA8-25,SI-PM-40,SI20B--8-50,SI20B--8-52,SI20PGB8B25","SI20MB-9-05 FS,SI20MB-9-15 FS,SI20SAM8-26 FS,SI20MBR8-27 FS","SI20MB-9-05,SI20MB-9-15,SI20SAM8-26,SI20MBR8-27",145,,146,,34,,34,,97,8,"HK1003 -Blackpoint D2 - Rev.0E DD30092021"
1-607,SI--UBA2D75,"(F) DETAIL DESIGN STEEL STRUCTURE WITH CONTRACTOR UBA7xxx",5121,"HK1003-Rev.0E-3",TT_Mile,"55902",-,-,-,0,TK_NotStart,20/04/2022,,20/04/2022,,"SI--UBA2B97 FS,SI--UBA2B70 FS,SI--UBA2-84 FS","SI--UBA2B97,SI--UBA2B70,SI--UBA2-84","SI20UBA3B25 FS","SI20UBA3B25",89,,89,,20,,20,,58,592,"HK1003 -Blackpoint D2 - Rev.0E DD30092021"
1-608,SI--UBA2B70,"DETAIL DESIGN STEEL STRUCTURE UBA7xxx",5121,"HK1003-Rev.0E-3",TT_Task,"55902",-,-,-,100,TK_Complete,24/06/2021,24/06/2021,01/08/2021,01/08/2021,"SI--UBA2F60 FS,SI--UBA2E60 FS,SI--UBA2-69 FF,SI--UBA2B100 FS","SI--UBA2F60,SI--UBA2E60,SI--UBA2-69,SI--UBA2B100","SI--UBA2D75 FS,SI--UBA2B97 FF,SI--UBA2D70 SS,SI--UBA2-84 FS","SI--UBA2D75,SI--UBA2B97,SI--UBA2D70,SI--UBA2-84",46,46,52,52,10,10,12,12,19,,"HK1003 -Blackpoint D2 - Rev.0E DD30092021"
1-609,SI20UBA2C31,"DESIGN INPUT (FINAL LOAD DATA) FROM VENDOR FOR 20UBA8110/20  AVAILABLE",5121,"HK1003-Rev.0E-3",TT_FinMile,"55902",-,-,-,100,TK_Complete,23/06/2021,23/06/2021,23/06/2021,23/06/2021,"SI--UBA2K60 FS","SI--UBA2K60","SI--UBA2D70 FS,SI20UBA2C61 FS,SI--UBA2J60 FS,SI20UBA2I60 FS","SI--UBA2D70,SI20UBA2C61,SI--UBA2J60,SI20UBA2I60",46,46,46,46,10,10,10,10,18,,"HK1003 -Blackpoint D2 - Rev.0E DD30092021"
1-610,SI--PAD4-25,"TRANSPORT PARTS EMB. INTO RISERES 20PAD",5121,"HK1003-Rev.0E-3",TT_Task,"55902",-,-,-,62,TK_Active,13/08/2021,13/08/2021,28/10/2021,,"SI--PAD3-80 FS","SI--PAD3-80","SI--PAD4-40 FS","SI--PAD4-40",53,53,64,,12,12,15,,25,560,"HK1003 -Blackpoint D2 - Rev.0E DD30092021"
1-611,SI20LCL4B40,"(OTD-OS) ON SITE BOILER BLOWDOWN PUMP 20LCL",5121,"HK1003-Rev.0E-3",TT_FinMile,"55902",-,-,-,0,TK_NotStart,21/07/2022,,21/07/2022,,"SI20LCL4B25 FS","SI20LCL4B25","SI20LCL6B15 FS,SI20LCL6B41 FS","SI20LCL6B15,SI20LCL6B41",102,,102,,23,,23,,74,336,"HK1003 -Blackpoint D2 - Rev.0E DD30092021"
1-612,SI---2P2A10,"LAST SUPPLIER INPUT GROUP II (EKT,EKG,LCA10,LCA30,LCL,LDK10,MAG,MAG50,MAW,MAM,MAL) LOT4",5121,"HK1003-Rev.0E-3",TT_FinMile,"55902",-,-,-,100,TK_Complete,18/07/2021,18/07/2021,18/07/2021,18/07/2021,"SI--L--2-65 FS,SI--EK-2-06 SS,SI--LBH2D65 SS,SP--MB-2-07 FS,SI--EK-2-04 SS,SI--M--2C20 SS,SI20LCL2B66 FS,SI20TPM7A2-5 FS,SI20TPM1A2-5 FS,SI20TPM1B2-5 FS,SI20TPM2C2-5 FS,SI20TPM4A2-5 FS,SI20TPM5A2-5 FS,SI20TPM5B2-5 FS,SI20TPM6A2-5 FS,SI20TPM6B2-5 FS,SI20TPM7B2-5 FS,SI20TPM8A2-5 FS,SI20TPM9A2-5 FS,SI20TPM9B2-5 FS,SI20TPM10A2-5 FS,SI20TPM13A2-5 FS,SI20TPM13B2-5 FS,SI20TPM14A2-5 FS,SI20TPM14B2-5 FS,SI20TPM15A2-5 FS,SI20TPM16A2-5 FS,SI20TPM17A2-5 FS,SI20TPM18A2-5 FS,SI20TPM19A2-5 FS,SI20TPM20A2-5 FS,SI20TPM21A2-5 FS,SI20TPM22A2-5 FS,SI20TPM23A2-5 FS,SI20TPM24A2-5 FS,SI20TPM28A2-5 FS,SI20TPM29A2-5 FS,SI20TPF1A2-5 FS,SI20TPF1B2-5 FS,SI20TPF1C2-5 FS,SI20TPF2A2-5 FS,SI--EK-2-65 FF,SI--LCA2B65 FS,SI--LDK2B66 FS,SI20LCL2B66 FF,SI--EK-2-67 FS,SI--EK-2-65 FS,SI--LD-2-65 FS,SI20LBG2C65 FS,SP20MA2B43 FS,SP20MA2B42 FS,SI--LAC2B65 FS","SI--L--2-65,SI--EK-2-06,SI--LBH2D65,SP--MB-2-07,SI--EK-2-04,SI--M--2C20,SI20LCL2B66,SI20TPM7A2-5,SI20TPM1A2-5,SI20TPM1B2-5,SI20TPM2C2-5,SI20TPM4A2-5,SI20TPM5A2-5,SI20TPM5B2-5,SI20TPM6A2-5,SI20TPM6B2-5,SI20TPM7B2-5,SI20TPM8A2-5,SI20TPM9A2-5,SI20TPM9B2-5,SI20TPM10A2-5,SI20TPM13A2-5,SI20TPM13B2-5,SI20TPM14A2-5,SI20TPM14B2-5,SI20TPM15A2-5,SI20TPM16A2-5,SI20TPM17A2-5,SI20TPM18A2-5,SI20TPM19A2-5,SI20TPM20A2-5,SI20TPM21A2-5,SI20TPM22A2-5,SI20TPM23A2-5,SI20TPM24A2-5,SI20TPM28A2-5,SI20TPM29A2-5,SI20TPF1A2-5,SI20TPF1B2-5,SI20TPF1C2-5,SI20TPF2A2-5,SI--EK-2-65,SI--LCA2B65,SI--LDK2B66,SI20LCL2B66,SI--EK-2-67,SI--EK-2-65,SI--LD-2-65,SI20LBG2C65,SP20MA2B43,SP20MA2B42,SI--LAC2B65","SI-P2I-1 FS,SI-P222-171 FF,SI---1P2H528 FF,SI---1P2H529 FF,SI---1P2A517 FF,SI---1P2H530 FF","SI-P2I-1,SI-P222-171,SI---1P2H528,SI---1P2H529,SI---1P2A517,SI---1P2H530",50,50,50,50,11,11,11,11,22,,"HK1003 -Blackpoint D2 - Rev.0E DD30092021"
1-613,SI20UBH5E48,"(RFE) FOUNDATION 20UBH01",5121,"HK1003-Rev.0E-3",TT_FinMile,"55902",-,-,-,0,TK_NotStart,01/04/2022,,01/04/2022,,"SI20UBH5-22 FS,SI20UBH5-22.07 FS","SI20UBH5-22,SI20UBH5-22.07","SI20GM-6H18 FS,SI20GM-6H17 FS,SI20GM-6E15 FS,SI20GM-6E15 FF,SI20GM-6H16 FS,SI20UBH8-27 FS","SI20GM-6H18,SI20GM-6H17,SI20GM-6E15,SI20GM-6E15,SI20GM-6H16,SI20UBH8-27",86,,86,,20,,20,,54,1496,"HK1003 -Blackpoint D2 - Rev.0E DD30092021"
1-614,SI20UBH5-22,"CONSTRUCTION OIL COLLECTION PIT / OIL SEPARATOR 20UBH01",5121,"HK1003-Rev.0E-3",TT_Task,"55902",-,-,-,0,TK_NotStart,10/02/2022,,30/03/2022,,"SI20UBH5-10 FS,SI20UBH5-22.00 SS","SI20UBH5-10,SI20UBH5-22.00","SI20UBH5E48 FS,SI20UBH8-27 FS","SI20UBH5E48,SI20UBH8-27",79,,86,,18,,20,,49,1512,"HK1003 -Blackpoint D2 - Rev.0E DD30092021"
1-615,SI20UBH5-10,"(H) START PLACING FORMWORK 20UBH01",5121,"HK1003-Rev.0E-3",TT_Mile,"55902",-,-,-,0,TK_NotStart,10/02/2022,,10/02/2022,,"SI20UBH5-20 FS,SI-----5-21& FS,SI20UBH2-97 FS","SI20UBH5-20,SI-----5-21&,SI20UBH2-97","SI20UBH5-22 FS,SI20UBH5-22.00 FS","SI20UBH5-22,SI20UBH5-22.00",79,,79,,18,,18,,49,1496,"HK1003 -Blackpoint D2 - Rev.0E DD30092021"
1-616,SI--B--2-14,"1ST. ROOM TO ROOM MATRIX",5121,"HK1003-Rev.0E-3",TT_Mile,"55902",-,-,-,100,TK_Complete,02/05/2021,02/05/2021,02/05/2021,02/05/2021,"SI--B--2-44 FS,SI-----1-05 FS,SI--5552-62 FS","SI--B--2-44,SI-----1-05,SI--5552-62","SI--BZK2-19 SS,SI--BZK2-13 FS","SI--BZK2-19,SI--BZK2-13",39,39,39,39,9,9,9,9,10,,"HK1003 -Blackpoint D2 - Rev.0E DD30092021"
1-617,SI--BAA2-60,"(DF) INPUT FOR MS3 IPB BAA",5121,"HK1003-Rev.0E-3",TT_FinMile,"55902",-,-,-,100,TK_Complete,26/06/2021,26/06/2021,26/06/2021,26/06/2021,"SI--BAA2-80 FS,SI-----1-03 FS,SI--BAA2-85 FS","SI--BAA2-80,SI-----1-03,SI--BAA2-85","SI20UBX2-50 SS,SI20UBL2C-55 FS","SI20UBX2-50,SI20UBL2C-55",47,47,47,47,10,10,10,10,19,,"HK1003 -Blackpoint D2 - Rev.0E DD30092021"
1-618,SI--LBH2D60,"(DF) INPUT FOR MS3 BLOW DOWN TANK LBH",5121,"HK1003-Rev.0E-3",TT_FinMile,"55902",-,-,-,100,TK_Complete,29/03/2021,29/03/2021,29/03/2021,29/03/2021,"SI--LBH2D15 FS","SI--LBH2D15","SI20UHW2-10 FS","SI20UHW2-10",34,34,34,34,8,8,8,8,7,,"HK1003 -Blackpoint D2 - Rev.0E DD30092021"
1-619,SI--LBH2D65,"(DF) INPUT FOR M2 BLOW DOWN TANK LBH",5121,"HK1003-Rev.0E-3",TT_FinMile,"55902",-,-,-,100,TK_Complete,18/06/2021,18/06/2021,18/06/2021,18/06/2021,"SI--LBH2D15 FS","SI--LBH2D15","SI---2P2A10 SS","SI---2P2A10",45,45,45,45,10,10,10,10,18,,"HK1003 -Blackpoint D2 - Rev.0E DD30092021"
1-620,SI20MAN7H15,"ELECTRICAL ERECTION PIPES / VALVES MAN",5121,"HK1003-Rev.0E-3",TT_Task,"55902",-,-,-,0,TK_NotStart,11/03/2023,,31/03/2023,,"SI20MAN6H15 FS,SI20BZK7C33 FF,SI20BZP7D18 FS,SI20BZP7D19 FS,SI20BZP7-5 FS,SI20BZP7-196 FS,SI20BZP7-174 FS,SI20UMY6M10 FS,SI20UMY6M11 FS,SI20UMY6M12 FS,SI--2227-68 FS,SI--BZP2-05 FS,SI--PEE7-20 FS,SI--BZP4B40 FS,SI20MAN6H16 FS","SI20MAN6H15,SI20BZK7C33,SI20BZP7D18,SI20BZP7D19,SI20BZP7-5,SI20BZP7-196,SI20BZP7-174,SI20UMY6M10,SI20UMY6M11,SI20UMY6M12,SI--2227-68,SI--BZP2-05,SI--PEE7-20,SI--BZP4B40,SI20MAN6H16","SI20MAN8-10 FS","SI20MAN8-10",136,,138,,31,,32,,92,112,"HK1003 -Blackpoint D2 - Rev.0E DD30092021"
1-621,SP20MAN3-80,"(RFS) READY FOR SHIPMENT ST BYPASS VALVES 20MAN",5121,"HK1003-Rev.0E-3",TT_FinMile,"55902",-,-,-,0,TK_NotStart,26/05/2022,,26/05/2022,,"SP20MAN4-10 FS,SP20MA-3-80 SS","SP20MAN4-10,SP20MA-3-80","SP20MAN4-25 FS","SP20MAN4-25",94,,94,,22,,22,,66,192,"HK1003 -Blackpoint D2 - Rev.0E DD30092021"
1-622,SI20BAT2-80,"QUOTATION STAGE MAIN TRANSFORMERS BAT/BBT",5121,"HK1003-Rev.0E-3",TT_Task,"55902",-,-,-,100,TK_Complete,26/02/2021,26/02/2021,10/05/2021,10/05/2021,"SI20BAT2-75 FS,SI20BAT2-88 FF","SI20BAT2-75,SI20BAT2-88","SI20BAT2-85 FS","SI20BAT2-85",29,29,40,40,6,6,9,9,5,,"HK1003 -Blackpoint D2 - Rev.0E DD30092021"
1-623,SI20S--4-40,"(OTD-OS) ON SITE DUCT FOR HVAC SYSTEM UMC 20SA",5121,"HK1003-Rev.0E-3",TT_FinMile,"55902",-,-,-,0,TK_NotStart,12/10/2022,,12/10/2022,,"SI20SAM4-25 FS","SI20SAM4-25","SI20SAM6E15 FS","SI20SAM6E15",114,,114,,26,,26,,83,1080,"HK1003 -Blackpoint D2 - Rev.0E DD30092021"
1-624,SI--BAW2-85,"CONTRACT INTO FORCE IN- / OUTDOOR GROUNDING BAW",5121,"HK1003-Rev.0E-3",TT_Mile,"55902",-,-,-,0,TK_NotStart,12/01/2022,,12/01/2022,,"SI--BAW2-80 FS","SI--BAW2-80","SI--BAW3-25 FS","SI--BAW3-25",75,,75,,17,,17,,45,1560,"HK1003 -Blackpoint D2 - Rev.0E DD30092021"
1-625,SI--BAW2-80,"QUOTATION STAGE IN- / OUTDOOR GROUNDING BAW",5121,"HK1003-Rev.0E-3",TT_Task,"55902",-,-,-,0,TK_NotStart,01/12/2021,,11/01/2022,,"SI--BAW2-75 FS","SI--BAW2-75","SI--BAW2-85 FS","SI--BAW2-85",69,,75,,16,,17,,40,1560,"HK1003 -Blackpoint D2 - Rev.0E DD30092021"
1-626,SI--BAW2-75,"RFQ BOQ IN- / OUTDOOR GROUNDING",5121,"HK1003-Rev.0E-3",TT_Mile,"55902",-,-,-,0,TK_NotStart,01/12/2021,,01/12/2021,,"SI--BAW2-74 SS,SI--BAW2-88 FS","SI--BAW2-74,SI--BAW2-88","SI--BAW2-80 FS","SI--BAW2-80",69,,69,,16,,16,,40,1560,"HK1003 -Blackpoint D2 - Rev.0E DD30092021"
1-627,SI20MBR6-35,"INTERMEDIATE ALIGNMENT / PLACING AND WELDING EXPANSION JOINT TO DIFFUSER 20MBR",5121,"HK1003-Rev.0E-3",TT_Task,"55902",-,-,-,0,TK_NotStart,10/09/2022,,23/09/2022,,"SI20MBR6-47 FS,SI20MBR6-15 FS,SI20MBA6-35 FS,SI20MB-6-25 FS,SI20MBR4-42 FS","SI20MBR6-47,SI20MBR6-15,SI20MBA6-35,SI20MB-6-25,SI20MBR4-42","SI20MBR6-48 FS,SI20MBR7-15 FS,SI20MAV6-55 FS","SI20MBR6-48,SI20MBR7-15,SI20MAV6-55",110,,111,,25,,26,,80,176,"HK1003 -Blackpoint D2 - Rev.0E DD30092021"
1-628,SI20MBR6-15,"ASSEMBLY MAIN PIECES PF DIFFUSER / WELDING SHELLS",5121,"HK1003-Rev.0E-3",TT_Task,"55902",-,-,-,0,TK_NotStart,22/04/2022,,02/06/2022,,"SI--LOG2-50 FS,SI--PEM6-20& FS,SI--PM-2-90 FS,SI--2222-32 SS,SI--3335-65 SS,SI--2226-66 FS,SI20UMX5-45 FS,SI20MBR4-40 FS","SI--LOG2-50,SI--PEM6-20&,SI--PM-2-90,SI--2222-32,SI--3335-65,SI--2226-66,SI20UMX5-45,SI20MBR4-40","SI20MBR6-47 FS,SI20MBR6-35 FS,SI20UEY6-80 FF,SI20UEY6-65 FS,SI20UEY6-65 FF,SI20UEY6-60 FS","SI20MBR6-47,SI20MBR6-35,SI20UEY6-80,SI20UEY6-65,SI20UEY6-65,SI20UEY6-60",89,,95,,20,,22,,59,632,"HK1003 -Blackpoint D2 - Rev.0E DD30092021"
1-629,SI20MBJ7-10,"PLACING 20MKC01/20MBJ01-TRANSFORMER (on UBG01/02)",5121,"HK1003-Rev.0E-3",TT_Task,"55902",-,-,-,0,TK_NotStart,09/07/2022,,10/07/2022,,"SI20MKC4-25 FS,SI20BFT4-41 FS,SI20UBD5-63 FS","SI20MKC4-25,SI20BFT4-41,SI20UBD5-63","SI20BAA7-15 FS,SI20M--7A15 FS,SI20SGC6J25 FS,SI20SGY7A22 FS,SI20BZK7A28 FS","SI20BAA7-15,SI20M--7A15,SI20SGC6J25,SI20SGY7A22,SI20BZK7A28",101,,101,,23,,23,,73,752,"HK1003 -Blackpoint D2 - Rev.0E DD30092021"
1-630,SI20PAH6-15,"ERECTION CONDENSER TUBE CLEANING SYSTEM 20PAH",5121,"HK1003-Rev.0E-3",TT_Task,"55902",-,-,-,0,TK_NotStart,27/08/2022,,23/09/2022,,"SI20UPY6M10 FS,SI20UMC5C45 FS,SI20PAH4-40 FS,SI20PAB6A15 FF,SI20UPY4M40 FS,SI20UMC5C55 FS,SI20PAH4-42 FS","SI20UPY6M10,SI20UMC5C45,SI20PAH4-40,SI20PAB6A15,SI20UPY4M40,SI20UMC5C55,SI20PAH4-42","SI20PAH6-40 SS,SI20PAH7-25 FF,SI20PA-6H70 FS,SI20PAH8-25 FS,SI20PAH6-10 FS","SI20PAH6-40,SI20PAH7-25,SI20PA-6H70,SI20PAH8-25,SI20PAH6-10",108,,111,,25,,26,,79,464,"HK1003 -Blackpoint D2 - Rev.0E DD30092021"
1-631,SI20BZP7-20,"ERECTION CABLE TRAYS 20UMY",5121,"HK1003-Rev.0E-3",TT_Task,"55902",-,-,-,0,TK_NotStart,20/04/2022,,10/05/2022,,"SI--PEE7-20 FS,SI--2227-68 FS,SI--BZP2-05 FS,SI20UMY4M40 FS,SI--BZP4B40 FS,SI20BZP7-26 FS,SI--PEE7-20 SS","SI--PEE7-20,SI--2227-68,SI--BZP2-05,SI20UMY4M40,SI--BZP4B40,SI20BZP7-26,SI--PEE7-20","SI20UMY6M12 FS,SI20UMY6M10 FS,SI20LBG7C15 FS,SI20UMY6M11 FS,SI20GM-7-15 FS,SI20BZP7B10# FF,SI20BZP7B10# SS,SI20BZK7B48 FS,SI20BZP7-198 FS,SI20BZK7-190 FS","SI20UMY6M12,SI20UMY6M10,SI20LBG7C15,SI20UMY6M11,SI20GM-7-15,SI20BZP7B10#,SI20BZP7B10#,SI20BZK7B48,SI20BZP7-198,SI20BZK7-190",89,,92,,20,,21,,58,168,"HK1003 -Blackpoint D2 - Rev.0E DD30092021"
1-632,SI20PAS4B40,"(OTD-OS) ON SITE CT MAKE-UP WATER PUMP PAS",5121,"HK1003-Rev.0E-3",TT_FinMile,"55902",-,-,-,0,TK_NotStart,22/02/2022,,22/02/2022,,"SI20PAS4B25 FS","SI20PAS4B25","SI20PAS6B15 FS","SI20PAS6B15",81,,81,,19,,19,,50,2480,"HK1003 -Blackpoint D2 - Rev.0E DD30092021"
1-633,SI20BAW5B16,"ERECTION LIGHTNING PROTECTION 20UMC",5121,"HK1003-Rev.0E-3",TT_Task,"55902",-,-,-,0,TK_NotStart,15/08/2022,,09/10/2022,,"SI20BAW3-25 FS,SI20UMC5C55 FS,SI20UMC5C15 FS","SI20BAW3-25,SI20UMC5C55,SI20UMC5C15","SI--BAW8-10 FS","SI--BAW8-10",106,,114,,24,,26,,77,2128,"HK1003 -Blackpoint D2 - Rev.0E DD30092021"
1-634,SI20UBA5B10,"(HS) START ERECTION STEEL STRUCTURE 20UBA7910/20",5121,"HK1003-Rev.0E-3",TT_Mile,"55902",-,-,-,0,TK_NotStart,08/08/2022,,08/08/2022,,"SI20UBA3B25 FS,SI20UBA5-15 FS,SI20UBA3B77 FS,SI20UBA7-15 SS,SI20UBA5-75 FS","SI20UBA3B25,SI20UBA5-15,SI20UBA3B77,SI20UBA7-15,SI20UBA5-75","SI20UBA5B15 FS","SI20UBA5B15",105,,105,,24,,24,,77,656,"HK1003 -Blackpoint D2 - Rev.0E DD30092021"
1-635,SI20UEN5D15,"CONSTRUCTION FENCING FINISHING WORKS 20UEN",5121,"HK1003-Rev.0E-3",TT_Task,"55902",-,-,-,0,TK_NotStart,26/02/2023,,18/03/2023,,"SI20EKG6H15 FS,SI20BZK7F25 FS,SI20UEN3D25 FS,SI20EK-6-15 FS,SI20EKG6H17 FS","SI20EKG6H15,SI20BZK7F25,SI20UEN3D25,SI20EK-6-15,SI20EKG6H17","SI20UEN5D45 FS","SI20UEN5D45",134,,137,,31,,31,,91,496,"HK1003 -Blackpoint D2 - Rev.0E DD30092021"
1-636,SI20BZL7F17,"LIGHTING AND SMALL POWER INSTALLATION 20UMC",5121,"HK1003-Rev.0E-3",TT_Task,"55902",-,-,-,0,TK_NotStart,17/08/2022,,20/11/2022,,"SI--BZL2-05 FS,SI20BZL7F15 FS,SI--BZL4-40 FS","SI--BZL2-05,SI20BZL7F15,SI--BZL4-40","SI20CY-7-15 FS,SI20BZL8-10 FS,SI20BZL7-16# FF,SI20BZL7-16# SS,SI20BZK7F29 FS","SI20CY-7-15,SI20BZL8-10,SI20BZL7-16#,SI20BZL7-16#,SI20BZK7F29",106,,120,,24,,28,,78,240,"HK1003 -Blackpoint D2 - Rev.0E DD30092021"
1-637,SI20MKQ8-25,"(TOP-20MKQ) GENERATOR WASTE GAS SYSTEM",5121,"HK1003-Rev.0E-3",TT_FinMile,"55902",-,-,-,0,TK_NotStart,25/04/2023,,25/04/2023,,"SI20BZK7C25 FS,SI20MKQ6A15 FS,SI20BZK7A25 FS,SI20MKQ6-15 FS,SI20QJ-8B12 SS,SI20BZK7F26 FS,SI20MBA8-23& FS,SI20BZK7A25 SS,SI20BAA7-05 FS","SI20BZK7C25,SI20MKQ6A15,SI20BZK7A25,SI20MKQ6-15,SI20QJ-8B12,SI20BZK7F26,SI20MBA8-23&,SI20BZK7A25,SI20BAA7-05","SI20MKA8-25 FS","SI20MKA8-25",142,,142,,33,,33,,96,136,"HK1003 -Blackpoint D2 - Rev.0E DD30092021"
1-638,SI20MKQ6A15,"PIPING ERECTION EXHAUST GAS SYSTEM FOR GENERATOR 20MKQ",5121,"HK1003-Rev.0E-3",TT_Task,"55902",-,-,-,0,TK_NotStart,11/09/2022,,26/11/2022,,"SI20MKQ6-15 FS,SI---5P6A09 FS","SI20MKQ6-15,SI---5P6A09","SI20MKQ8-25 FS,SI20MKG6A16 SS","SI20MKQ8-25,SI20MKG6A16",110,,121,,25,,28,,81,904,"HK1003 -Blackpoint D2 - Rev.0E DD30092021"
1-639,SI20BZL7G15,"LIGHTING AND SMALL POWER INSTALLATION HRSG20",5121,"HK1003-Rev.0E-3",TT_Task,"55902",-,-,-,0,TK_NotStart,03/09/2022,,02/12/2022,,"SI--BZL2-05 FS,SI20CJF4-40 FS,SI20HB-6-20 SS,SI20BZP7-125 FS,SI--BZL4-40 FS","SI--BZL2-05,SI20CJF4-40,SI20HB-6-20,SI20BZP7-125,SI--BZL4-40","SI20BZL8A10 FS,SI20BZL7-16# FF,SI20BZL7-16# SS,SI20BZK7F29 FS","SI20BZL8A10,SI20BZL7-16#,SI20BZL7-16#,SI20BZK7F29",109,,121,,25,,28,,80,1288,"HK1003 -Blackpoint D2 - Rev.0E DD30092021"
1-640,SI20BZL8-25,"COMMISSIONING LIGHTING/SMALL POWER 20UHA AREA",5121,"HK1003-Rev.0E-3",TT_Task,"55902",-,-,-,0,TK_NotStart,18/04/2023,,24/04/2023,,"SI20BZL8A10 FS,SI-PM-40 FS,SI20BFA8-35 SS,SI20BF-8-25 SS","SI20BZL8A10,SI-PM-40,SI20BFA8-35,SI20BF-8-25","SI20MB-9-15 FS,SI20--P6-75 SS","SI20MB-9-15,SI20--P6-75",141,,142,,33,,33,,95,200,"HK1003 -Blackpoint D2 - Rev.0E DD30092021"
1-641,SI20BZL8A10,"(TOP-20BZL-02) LIGHTING / SMALL POWER INCL. BMZ FOR UHA  AREA",5121,"HK1003-Rev.0E-3",TT_FinMile,"55902",-,-,-,0,TK_NotStart,17/04/2023,,17/04/2023,,"SI20BZL7G15 FS,SI20BZL7C15 FS","SI20BZL7G15,SI20BZL7C15","SI20BZL8-25 FS","SI20BZL8-25",141,,141,,32,,32,,95,200,"HK1003 -Blackpoint D2 - Rev.0E DD30092021"
1-642,SI20BZL7F15,"HIGH BAY LIGHTING INSTALLATION 20UMC",5121,"HK1003-Rev.0E-3",TT_Task,"55902",-,-,-,0,TK_NotStart,27/07/2022,,16/08/2022,,"SI--BZL4-40 FS,SI20SMM6-15 FS,SI--BZL2-05 FS,SI20UMC5C55 FS","SI--BZL4-40,SI20SMM6-15,SI--BZL2-05,SI20UMC5C55","SI20BZL8-10 FS,SI20BZL7F17 FS,SI20CY-7-15 FS,SI20BZL7-16# FF,SI20BZL7-16# SS","SI20BZL8-10,SI20BZL7F17,SI20CY-7-15,SI20BZL7-16#,SI20BZL7-16#",103,,106,,24,,24,,75,240,"HK1003 -Blackpoint D2 - Rev.0E DD30092021"
1-643,SI20S--3J25,"DETAIL DESIGN DUCTS HVAC SYSTEM UMC SA",5121,"HK1003-Rev.0E-3",TT_Task,"55902",-,-,-,100,TK_Complete,02/08/2021,02/08/2021,26/09/2021,26/09/2021,"SI--SA-2-26 FS,SI20SA-2-85 FS","SI--SA-2-26,SI20SA-2-85","SI20SAM3E25 FF,SI20S--2J35 FS,SI20SAM3E25 FS,SI20SAM3E31 FS","SI20SAM3E25,SI20S--2J35,SI20SAM3E25,SI20SAM3E31",52,52,60,60,12,12,14,14,24,,"HK1003 -Blackpoint D2 - Rev.0E DD30092021"
1-644,SI20SAM3E25,"MANUFACTURING DUCT FOR HVAC SYSTEM UMC 20SA",5121,"HK1003-Rev.0E-3",TT_Task,"55902",-,-,-,0,TK_NotStart,11/03/2022,,23/06/2022,,"SI20S--2J35 FS,SI20S--3J25 FF,SI20S--3J25 FS,SI20SA-2-85 FS","SI20S--2J35,SI20S--3J25,SI20S--3J25,SI20SA-2-85","SI20SAM3B70 FS","SI20SAM3B70",83,,98,,19,,23,,52,1080,"HK1003 -Blackpoint D2 - Rev.0E DD30092021"
1-645,SI20MKA6-32,"ALIGNMENT OF GENERATOR AND SLIPRING SHAFT TO STEAM TURBINE MKA",5121,"HK1003-Rev.0E-3",TT_Task,"55902",-,-,-,0,TK_NotStart,01/09/2022,,06/09/2022,,"SI20MKA6-12 FS,SI20MKA6-82 FS,SI20MKA6F17 FS","SI20MKA6-12,SI20MKA6-82,SI20MKA6F17","SI20MKA6E17 FS,SI20MKA6E13 FS,SI20MKA6F16 FS,SI20MKA6-26 FS","SI20MKA6E17,SI20MKA6E13,SI20MKA6F16,SI20MKA6-26",108,,109,,25,,25,,80,448,"HK1003 -Blackpoint D2 - Rev.0E DD30092021"
1-646,SI20BZL8E25,"COMMISSIONING LIGHTING/SMALL POWER IN 20URD/URA/UGJ",5121,"HK1003-Rev.0E-3",TT_Task,"55902",-,-,-,0,TK_NotStart,04/05/2023,,10/05/2023,,"SI20BZL8E10 FS,SI-PM-40 FS","SI20BZL8E10,SI-PM-40","SI20MB-9-05 FS,SI20M--9-55 FS","SI20MB-9-05,SI20M--9-55",143,,144,,33,,33,,96,352,"HK1003 -Blackpoint D2 - Rev.0E DD30092021"
1-647,SP--B--2-50,"PREL. ELECTRICAL LOAD DATA (VEL) FOR LV",5121,"HK1003-Rev.0E-3",TT_Mile,"55902",-,-,-,100,TK_Complete,08/05/2021,08/05/2021,08/05/2021,08/05/2021,"SI--HA-2-95 SS,SP--MB-2-50 FS","SI--HA-2-95,SP--MB-2-50","SI20BUK2-15 FS,SP--B--2-18 SS,SP--B--2-16 SS,SI20BTA2-15 FS","SI20BUK2-15,SP--B--2-18,SP--B--2-16,SI20BTA2-15",40,40,40,40,9,9,9,9,11,,"HK1003 -Blackpoint D2 - Rev.0E DD30092021"
1-648,SI20BAT2-75,"RFQ MAIN TRANSFORMERS BAT/BBT",5121,"HK1003-Rev.0E-3",TT_Mile,"55902",-,-,-,100,TK_Complete,26/02/2021,26/02/2021,26/02/2021,26/02/2021,"SI20BAT2-15 FS","SI20BAT2-15","SI20BAT2-80 FS,SI20BAT2-88 FS","SI20BAT2-80,SI20BAT2-88",29,29,29,29,6,6,6,6,5,,"HK1003 -Blackpoint D2 - Rev.0E DD30092021"
1-649,SP--CJT2-80,"ORDERING / NEGOTIATIONS SFC CUBICLES CJT",5121,"HK1003-Rev.0E-3",TT_Task,"55902",-,-,-,100,TK_Complete,02/04/2021,02/04/2021,27/05/2021,27/05/2021,"SP--CJT2-77 FS","SP--CJT2-77","SP--CJT2-85 FS","SP--CJT2-85",34,34,42,42,8,8,9,9,7,,"HK1003 -Blackpoint D2 - Rev.0E DD30092021"
1-650,SP--CJT2-77,"PREPARATION OF SPEC. / ORDER DOCU. SFC CUBICLES CJT",5121,"HK1003-Rev.0E-3",TT_Task,"55902",-,-,-,100,TK_Complete,19/02/2021,19/02/2021,01/04/2021,01/04/2021,"SI-----1-04 SS,SI--3332-27 FS","SI-----1-04,SI--3332-27","SP--CJT2-76 SS,SP--CJT2-80 FS,SP--MKC2-75 SS,SP--C--2-15 FS","SP--CJT2-76,SP--CJT2-80,SP--MKC2-75,SP--C--2-15",28,28,34,34,6,6,8,8,5,,"HK1003 -Blackpoint D2 - Rev.0E DD30092021"
1-651,SI--3331-35,"PROJECT SPECIFIC TCC`s AVAILABLE",5121,"HK1003-Rev.0E-3",TT_FinMile,"55902",-,-,-,100,TK_Complete,15/01/2021,15/01/2021,15/01/2021,15/01/2021,"SI-----1-04 FS,SI--3331-31 FS","SI-----1-04,SI--3331-31","SP20MB-3-25 FS,SP--CJJ3-25 FS,SP20MB-2-80 FS,SI--HA-2-93 FS,SI20SA-2-75 FS,SP20MKW2-10 FS,SP--MKA2-86 FS,SP20MBP2A80 FS,SP20MBX2A80 FS,SP20MBL2-80 FS,SP--MB-3G75 FS,SP--MB-2A80 FS,SP--MKC2-75 FS,SP20MBR2A80 FS,SP--MBK2-80 FS,SP--SGJ2-11 FS","SP20MB-3-25,SP--CJJ3-25,SP20MB-2-80,SI--HA-2-93,SI20SA-2-75,SP20MKW2-10,SP--MKA2-86,SP20MBP2A80,SP20MBX2A80,SP20MBL2-80,SP--MB-3G75,SP--MB-2A80,SP--MKC2-75,SP20MBR2A80,SP--MBK2-80,SP--SGJ2-11",23,23,23,23,5,5,5,5,2,,"HK1003 -Blackpoint D2 - Rev.0E DD30092021"
1-652,SI20UBN2-20,"PREPARATION FOUNDATION GROUNDING DWGS 20UBN",5121,"HK1003-Rev.0E-3",TT_Task,"55902",-,-,-,0,TK_NotStart,27/11/2021,,10/12/2021,,"SI--BAW2-02 FS,SI20UBN2-107 FF","SI--BAW2-02,SI20UBN2-107","SI20UBN2-40 FS,SI20UBN2-25 FS","SI20UBN2-40,SI20UBN2-25",69,,70,,16,,16,,39,952,"HK1003 -Blackpoint D2 - Rev.0E DD30092021"
1-653,SI20HB-6E33,"WELDING INLET DUCT",5121,"HK1003-Rev.0E-3",TT_Task,"55902",-,-,-,0,TK_NotStart,10/05/2022,,18/06/2022,,"SI20HB-4E40 FS,SI20HB-6E29 SS","SI20HB-4E40,SI20HB-6E29","SI20HB-8-18 FS,SI20HB-6C29 FS,SI20HB-6E27 FS,SI20LCA6A16 FS","SI20HB-8-18,SI20HB-6C29,SI20HB-6E27,SI20LCA6A16",92,,98,,21,,22,,64,216,"HK1003 -Blackpoint D2 - Rev.0E DD30092021"
1-654,SI20SAM8-29,"(TOP-20SAM30) HVAC SYSTEM FOR GT NOISE ENCLOSURE MPB",5121,"HK1003-Rev.0E-3",TT_FinMile,"55902",-,-,-,0,TK_NotStart,25/05/2023,,25/05/2023,,"SI20BZK7L25 FS,SI20BZK7F26 FS,SI20QJ-8B11 SS,SI20MPB6E82 FS,SI20MPB7E81 FS,SI20MBA8-23& FS,SI--9998-22& FS,SI20QJ-8B13 FS","SI20BZK7L25,SI20BZK7F26,SI20QJ-8B11,SI20MPB6E82,SI20MPB7E81,SI20MBA8-23&,SI--9998-22&,SI20QJ-8B13","SI20SAM8-26 FS","SI20SAM8-26",146,,146,,34,,34,,97,8,"HK1003 -Blackpoint D2 - Rev.0E DD30092021"
1-655,SI20MBX8E25,"COLD COMMISSIONING GT HYDRAULIC OIL SYSTEM 20MBX",5121,"HK1003-Rev.0E-3",TT_Task,"55902",-,-,-,0,TK_NotStart,09/05/2023,,15/05/2023,,"SI20MBX8E10 FS,SI20CPA8-25 FS,SI20MBA8-25 SS,SI-PM-40 FS,SI20B--8-50 FS,SI20B--8-52 FS,SI20PGB8B25 FS,SI20SGC8-37 FS","SI20MBX8E10,SI20CPA8-25,SI20MBA8-25,SI-PM-40,SI20B--8-50,SI20B--8-52,SI20PGB8B25,SI20SGC8-37","SI20MB-8E25 FS,SI20MB-8-25# SS","SI20MB-8E25,SI20MB-8-25#",144,,145,,33,,33,,97,32,"HK1003 -Blackpoint D2 - Rev.0E DD30092021"
1-656,SI20MBX8-25,"COLD COMMISSIONING GT20 PNEUMATIC SYSTEM MBX21",5121,"HK1003-Rev.0E-3",TT_Task,"55902",-,-,-,0,TK_NotStart,23/06/2023,,29/06/2023,,"SI20CPA8-25 FS,SI20MBX8-10 FS,SI20MBA8-25 FS,SI-PM-40 FS,SI20B--8-50 FS,SI20B--8-52 FS,SI20SCA8-17 SS,SI20PGB8B25 FS","SI20CPA8-25,SI20MBX8-10,SI20MBA8-25,SI-PM-40,SI20B--8-50,SI20B--8-52,SI20SCA8-17,SI20PGB8B25","SI20MB-8-25# SS,SI20MB-8-25# FF,SI20MB-9-15 FS","SI20MB-8-25#,SI20MB-8-25#,SI20MB-9-15",150,,151,,35,,35,,99,8,"HK1003 -Blackpoint D2 - Rev.0E DD30092021"
1-657,SI20LBA6H45,"INSULATION PIPES / VALVES FOR STEAM SYSTEM 20LBA10",5121,"HK1003-Rev.0E-3",TT_Task,"55902",-,-,-,0,TK_NotStart,18/02/2023,,31/03/2023,,"SI20LBA6H70 FF,SI-P2I-15 FS","SI20LBA6H70,SI-P2I-15","SI20LBA8J10 FS,SI20LBB8J11 FS,SI20LBG8A10 FS,SI20--P6-75 FS,SI20LBA8H10 FS,SI20---6A15# FF,SI20LBA7H15 FF,SI20---6A15# SS,SI20--P6-75 FF,SI20LBG8A10 FF,SI20LBB8J11 FF,SI20LBA8H10 FF,SI20LBA8J10 FF","SI20LBA8J10,SI20LBB8J11,SI20LBG8A10,SI20--P6-75,SI20LBA8H10,SI20---6A15#,SI20LBA7H15,SI20---6A15#,SI20--P6-75,SI20LBG8A10,SI20LBB8J11,SI20LBA8H10,SI20LBA8J10",133,,138,,31,,32,,91,192,"HK1003 -Blackpoint D2 - Rev.0E DD30092021"
1-658,SI20LBA6J45,"INSULATION PIPES / VALVES FOR STEAM SYSTEM 20LBA80 (BOP)",5121,"HK1003-Rev.0E-3",TT_Task,"55902",-,-,-,0,TK_NotStart,18/02/2023,,24/03/2023,,"SI20LBA6J15 FS,SI20LBA6J70 FF,SI20LBA6J71 FS,SI-P2I-15 FS","SI20LBA6J15,SI20LBA6J70,SI20LBA6J71,SI-P2I-15","SI20LBA8H10 FS,SI20LBB8J11 FS,SI20LBG8A10 FS,SI20--P6-75 FS,SI20LBA7J15 FF,SI20LBA8J10 FS,SI20---6A15# FF","SI20LBA8H10,SI20LBB8J11,SI20LBG8A10,SI20--P6-75,SI20LBA7J15,SI20LBA8J10,SI20---6A15#",133,,137,,31,,32,,91,192,"HK1003 -Blackpoint D2 - Rev.0E DD30092021"
1-659,SI20BZK3-25,"MANUFACTURING / SHOP TEST MV/LV CABLES20/00BZK (LOT 1)",5121,"HK1003-Rev.0E-3",TT_Task,"55902",-,-,-,0,TK_NotStart,03/11/2021,,19/04/2022,,"SI--BZK2-85 FS,SI--C--2-85 FS,SI--2222-30 FS","SI--BZK2-85,SI--C--2-85,SI--2222-30","SI20BZK3-70 FS","SI20BZK3-70",65,,89,,15,,20,,37,472,"HK1003 -Blackpoint D2 - Rev.0E DD30092021"
1-660,SI20BZK3-80,"(RFS) READY FOR SHIPMENT MV/LV CABLES20/00BZK (LOT 1)",5121,"HK1003-Rev.0E-3",TT_FinMile,"55902",-,-,-,0,TK_NotStart,17/05/2022,,17/05/2022,,"SI20BZK4-10 FS","SI20BZK4-10","SI--BZK2-05 FS,SI20BZK4-25 FS","SI--BZK2-05,SI20BZK4-25",93,,93,,21,,21,,65,472,"HK1003 -Blackpoint D2 - Rev.0E DD30092021"
1-661,SI--2222-37,"COMMISSIONING MANUAL - WATER STEAM CYCLE",5121,"HK1003-Rev.0E-3",TT_Mile,"55902",-,-,-,0,TK_NotStart,18/03/2023,,18/03/2023,,"SI-----1-03 SS,SI20UMY6M70 SS","SI-----1-03,SI20UMY6M70","SI20LBB8H25 SS,SI20LBG8A25 SS,SI20LAC8B25 SS,SI20LBA8J25 SS,SI20LBA8H25 SS,SI20LCA8M25 SS","SI20LBB8H25,SI20LBG8A25,SI20LAC8B25,SI20LBA8J25,SI20LBA8H25,SI20LCA8M25",137,,137,,31,,31,,93,304,"HK1003 -Blackpoint D2 - Rev.0E DD30092021"
1-662,SI20UBA5B46,"(RFE) STEEL STRUCTURE 20UBA8110/20",5121,"HK1003-Rev.0E-3",TT_FinMile,"55902",-,-,-,0,TK_NotStart,11/12/2022,,11/12/2022,,"SI20UBA5B17 FS,SI20UBY5-60 FS","SI20UBA5B17,SI20UBY5-60","SI20UBA5-95 FS,SI20UBA7-105 FS","SI20UBA5-95,SI20UBA7-105",123,,123,,28,,28,,86,80,"HK1003 -Blackpoint D2 - Rev.0E DD30092021"
1-663,SI20---9-85&,"START RELIABILITY RUN COMBINED CYCLE POWER PLANT",5121,"HK1003-Rev.0E-3",TT_Mile,"55902",-,-,-,0,TK_NotStart,17/12/2023,,17/12/2023,,"","","SI20M--9-85 SS","SI20M--9-85",176,,176,,41,,41,,99,0,"HK1003 -Blackpoint D2 - Rev.0E DD30092021"
1-664,SI--SG-2-15,"BASIC DESIGN FIRE FIGHTING SYSTEMS SG-",5121,"HK1003-Rev.0E-3",TT_Task,"55902",-,-,-,100,TK_Complete,16/03/2021,16/03/2021,19/04/2021,19/04/2021,"SI--SG-2-20 FF,SI-----1-05 FS","SI--SG-2-20,SI-----1-05","SI--SG-2-17 FF,SI--SG-2-17 FS,SI--SG-2-42 FS,SI--SG-2-16 FS,SI--SG-2-85 FS,SI--SG-2-86 FS","SI--SG-2-17,SI--SG-2-17,SI--SG-2-42,SI--SG-2-16,SI--SG-2-85,SI--SG-2-86",32,32,37,37,7,7,8,8,6,,"HK1003 -Blackpoint D2 - Rev.0E DD30092021"
1-665,SI20BFT4-25,"TRANSPORT LV-TRANSFORMERS 20BFT01/02",5121,"HK1003-Rev.0E-3",TT_Task,"55902",-,-,-,0,TK_NotStart,30/05/2022,,24/07/2022,,"SI20BFT3-80 FS","SI20BFT3-80","SI20BFT4-40 FS","SI20BFT4-40",95,,103,,22,,24,,67,816,"HK1003 -Blackpoint D2 - Rev.0E DD30092021"
1-666,SI20BFT3-25,"DETAIL DESIGN / MANUFACTURING / SHOP TEST LV-TRANSFORMERS BFT",5121,"HK1003-Rev.0E-3",TT_Task,"55902",-,-,-,4,TK_Active,22/09/2021,22/09/2021,01/05/2022,,"SI--BFT2-85 FS","SI--BFT2-85","SI20BFT3-70 FS","SI20BFT3-70",59,59,91,,13,13,21,,30,816,"HK1003 -Blackpoint D2 - Rev.0E DD30092021"
1-667,SI20GM-7E15,"ELECTRICAL ERECTION SUMP PUMPS GM FOR UBF",5121,"HK1003-Rev.0E-3",TT_Task,"55902",-,-,-,0,TK_NotStart,10/07/2022,,16/07/2022,,"SI20GM-6B15 FS","SI20GM-6B15","SI20GM-8B10 FS,SI20BAT7-17 FS,SI20BZK7D11# FF,SI20BZK7D11# SS","SI20GM-8B10,SI20BAT7-17,SI20BZK7D11#,SI20BZK7D11#",101,,102,,23,,23,,73,816,"HK1003 -Blackpoint D2 - Rev.0E DD30092021"
1-668,SI20GM-7-15,"ELECTRICAL ERECTION SUMP PUMPS/OIL SEPARATOR GM FOR 20UBH01/03",5121,"HK1003-Rev.0E-3",TT_Task,"55902",-,-,-,0,TK_NotStart,25/07/2022,,31/07/2022,,"SI20GM-6E15 FS,SI20BZP7-20 FS","SI20GM-6E15,SI20BZP7-20","SI20GM-8E10 FS,SI20BAT7-17 FS,SI20BZK7D11# FF,SI20BZK7D11# SS","SI20GM-8E10,SI20BAT7-17,SI20BZK7D11#,SI20BZK7D11#",103,,104,,24,,24,,75,696,"HK1003 -Blackpoint D2 - Rev.0E DD30092021"
1-669,SI20BAW5B15,"ERECTION OUTDOOR EARTHING 20UMC AREA",5121,"HK1003-Rev.0E-3",TT_Task,"55902",-,-,-,0,TK_NotStart,31/01/2023,,27/02/2023,,"SI--BAW2-05 FS,SI20UMC5B90 SS,SI20UBA5-17 FF,SI--BAW4-40 FS,SI20UMC5C15 FS,SI20MKA6-37 SS","SI--BAW2-05,SI20UMC5B90,SI20UBA5-17,SI--BAW4-40,SI20UMC5C15,SI20MKA6-37","SI--BAW8-10 FS,SI--BAW8A10 FS,SI--BAW7-55 FS,SI20TP-262& FS,SI20TPE7A7-17 FS","SI--BAW8-10,SI--BAW8A10,SI--BAW7-55,SI20TP-262&,SI20TPE7A7-17",130,,134,,30,,31,,89,16,"HK1003 -Blackpoint D2 - Rev.0E DD30092021"
1-670,SI--UMC2B70,"DETAIL DESIGN STEEL STRUCTURE / CRANE 20UMC",5121,"HK1003-Rev.0E-3",TT_Task,"55902",-,-,-,100,TK_Complete,03/03/2021,03/03/2021,16/05/2021,16/05/2021,"SI--UMC2B45 FS,SI--UMC2B60 FF,SI--UMC2B78 FF","SI--UMC2B45,SI--UMC2B60,SI--UMC2B78","SI--BZP2-30 SS,SI--UMC2B75 FS,SI--UMC2B71 FS,SI--UMC2E70 SS,SI--UMC2B94 FS","SI--BZP2-30,SI--UMC2B75,SI--UMC2B71,SI--UMC2E70,SI--UMC2B94",30,30,41,41,7,7,9,9,5,,"HK1003 -Blackpoint D2 - Rev.0E DD30092021"
1-671,SI20CPC8A25,"I&C FIELD COMMISSIONING HRSG20 CPC",5121,"HK1003-Rev.0E-3",TT_Task,"55902",-,-,-,0,TK_NotStart,18/04/2023,,15/05/2023,,"SI20CPC8-25 FS","SI20CPC8-25","SI20CPC8A30 FS,SI20--P6-75 SS,SI20HA-8-25# FF","SI20CPC8A30,SI20--P6-75,SI20HA-8-25#",141,,145,,33,,33,,95,32,"HK1003 -Blackpoint D2 - Rev.0E DD30092021"
1-672,SI--CKA4-25,"TRANSPORT THERMODYN. DIAGNOSIS SERVER",5121,"HK1003-Rev.0E-3",TT_Task,"55902",-,-,-,0,TK_NotStart,05/02/2023,,01/04/2023,,"SI20UBA4H25 FS","SI20UBA4H25","SI--CKA7-15 FS","SI--CKA7-15",131,,139,,30,,32,,89,408,"HK1003 -Blackpoint D2 - Rev.0E DD30092021"
1-673,SI20BFF3-25,"MANUFACTURING / SHOP TEST LV SWITCHGEAR FOR HRSG 20BFF/BMF",5121,"HK1003-Rev.0E-3",TT_Task,"55902",-,-,-,0,TK_NotStart,15/01/2022,,13/05/2022,,"SI--BFF2-88 FS,SI--BFF2-85 FS,SI--B--2A56 FS,SI--B--2A55 FS,SI--2222-30 FS","SI--BFF2-88,SI--BFF2-85,SI--B--2A56,SI--B--2A55,SI--2222-30","SI20BFF4-25 FS,SI20BFF3-80 FS","SI20BFF4-25,SI20BFF3-80",76,,92,,17,,21,,45,880,"HK1003 -Blackpoint D2 - Rev.0E DD30092021"
1-674,SI--ZTA4A40,"(OTD-OS) ON SITE EQUIPMENT/ MOBILIZATION CHEMICAL CLEANING SYSTEM ZTA",5121,"HK1003-Rev.0E-3",TT_FinMile,"55902",-,-,-,0,TK_NotStart,17/03/2023,,17/03/2023,,"SI--ZTA4A25 FS,SI--ZTB4A40 FS","SI--ZTA4A25,SI--ZTB4A40","SI20ZTA6A00 FS,SI20ZTA6A0 FS","SI20ZTA6A00,SI20ZTA6A0",136,,136,,31,,31,,92,0,"HK1003 -Blackpoint D2 - Rev.0E DD30092021"
1-675,SI20HB-5-25,"GROUTING MAIN STEEL incl. CURING HRSG20",5121,"HK1003-Rev.0E-3",TT_Task,"55902",-,-,-,0,TK_NotStart,08/03/2022,,14/03/2022,,"SI20HB-6-18 FS,SI20HB-6-19 FF","SI20HB-6-18,SI20HB-6-19","SI20HA-6C25 FS","SI20HA-6C25",83,,84,,19,,19,,52,136,"HK1003 -Blackpoint D2 - Rev.0E DD30092021"
1-676,SI20HA-6D17,"ERECTION HP VESSEL / IP AND LP DRUM",5121,"HK1003-Rev.0E-3",TT_Task,"55902",-,-,-,0,TK_NotStart,02/05/2022,,03/05/2022,,"SI20HB-6C28 FS,SI20HA-4D40 FS,SI20HA-6C22 FS","SI20HB-6C28,SI20HA-4D40,SI20HA-6C22","SI20HB-6-14 FS,SI20HA-6D18 FS,SI20LAC6B15 FF,SI20LCA6M16 FS,SI20QC-6-15 FS,SI20LAC6M15 FS,SI20UEY6-80 FS,SI20LCL6B41 FS,SI20UMY6M10 FS","SI20HB-6-14,SI20HA-6D18,SI20LAC6B15,SI20LCA6M16,SI20QC-6-15,SI20LAC6M15,SI20UEY6-80,SI20LCL6B41,SI20UMY6M10",91,,91,,21,,21,,61,0,"HK1003 -Blackpoint D2 - Rev.0E DD30092021"
1-677,SI20HA-6A48,"(RFP) READY FOR PIPING HRSG20",5121,"HK1003-Rev.0E-3",TT_FinMile,"55902",-,-,-,0,TK_NotStart,05/05/2022,,05/05/2022,,"SI20HA-6C22 FS,SI20HA-6D18 FS","SI20HA-6C22,SI20HA-6D18","SI20HAA8E17 FS,SI20LCL8B10 FS,SI20HAD8G10 FS,SI20HAD8E10 FS,SI20LBH8D10 FS,SI20HAD8F10 FS,SI20HB-6-15 FS,SI20HB-6-20 FS,SI20HB-6-48 FF,SI20UHA6B-15 FS,SI20HB-6-14 FS","SI20HAA8E17,SI20LCL8B10,SI20HAD8G10,SI20HAD8E10,SI20LBH8D10,SI20HAD8F10,SI20HB-6-15,SI20HB-6-20,SI20HB-6-48,SI20UHA6B-15,SI20HB-6-14",91,,91,,21,,21,,63,0,"HK1003 -Blackpoint D2 - Rev.0E DD30092021"
1-678,SI20PAA6-15,"ERECTION COOLING TOWER COARSE SCREEN 20PAA",5121,"HK1003-Rev.0E-3",TT_Task,"55902",-,-,-,0,TK_NotStart,07/09/2022,,11/10/2022,,"SI20URD5-45 SS,SI20PAA2-05 FS,SI20PAA4-40 FS,SI20URA5-45 FS","SI20URD5-45,SI20PAA2-05,SI20PAA4-40,SI20URA5-45","SI20PAB8-05 FS,SI20PAA8-20 FS","SI20PAB8-05,SI20PAA8-20",109,,114,,25,,26,,80,1536,"HK1003 -Blackpoint D2 - Rev.0E DD30092021"
1-679,SI--UBA2F60,"(MS3) STEEL STRUCTURE FINAL DIMENSIONS, LOADS AVAILABLE UBA7xxx",5121,"HK1003-Rev.0E-3",TT_FinMile,"55902",-,-,-,100,TK_Complete,23/06/2021,23/06/2021,23/06/2021,23/06/2021,"SI--M--2C20 SS,SI--UBA2K60 SS","SI--M--2C20,SI--UBA2K60","SI--UBA2B70 FS,SI--UBA2F61 FS,SI--UBA2B100 FS","SI--UBA2B70,SI--UBA2F61,SI--UBA2B100",46,46,46,46,10,10,10,10,18,,"HK1003 -Blackpoint D2 - Rev.0E DD30092021"
1-680,SI20MBA8-23&,"START COLD COMMISSIONING GT/GEN 20",5121,"HK1003-Rev.0E-3",TT_Mile,"55902",-,-,-,0,TK_NotStart,26/04/2023,,26/04/2023,,"SI20MB-8-25& SS","SI20MB-8-25&","SI20EK-8H13 FS,SI20EK-8H14 FS,SI20CYE8-10 FS,SI20CYQ8-10 FS,SI20MBA8-10 FS,SI20MBA8D10 FS,SI20MBA8A10 FS,SI20MBA8B10 FS,SI20MBH8-10 FS,SI20MBL8-10 FS,SI20MBP8-10 FS,SI20MBR8-26 FS,SI20MBV8-10 FS,SI20MBX8E10 FS,SI20MBX8-10 FS,SI20MKA8-10 FS,SI20MKG8-26 FS,SI20MKF8-11 FS,SI20MKQ8-25 FS,SI20MKW8-10 FS,SI20SAM8-29 FS,SI20SGJ8-20 FS","SI20EK-8H13,SI20EK-8H14,SI20CYE8-10,SI20CYQ8-10,SI20MBA8-10,SI20MBA8D10,SI20MBA8A10,SI20MBA8B10,SI20MBH8-10,SI20MBL8-10,SI20MBP8-10,SI20MBR8-26,SI20MBV8-10,SI20MBX8E10,SI20MBX8-10,SI20MKA8-10,SI20MKG8-26,SI20MKF8-11,SI20MKQ8-25,SI20MKW8-10,SI20SAM8-29,SI20SGJ8-20",142,,142,,33,,33,,96,24,"HK1003 -Blackpoint D2 - Rev.0E DD30092021"
1-681,SI20QC-2-85,"CONTRACT INTO FORCE DOSING CONTAINER QC",5121,"HK1003-Rev.0E-3",TT_Mile,"55902",-,-,-,100,TK_Complete,12/08/2021,12/08/2021,12/08/2021,12/08/2021,"SI20QC-2-80 FS","SI20QC-2-80","SI20QC-3-26 FS,SI20QC-3-25 FS,SI20USX2-41 FS,SI20QC-2-65 FS,SI20QC-2-89 FS","SI20QC-3-26,SI20QC-3-25,SI20USX2-41,SI20QC-2-65,SI20QC-2-89",53,53,53,53,12,12,12,12,25,,"HK1003 -Blackpoint D2 - Rev.0E DD30092021"
1-682,SI--URA2-55,"FOUNDATION GROUNDING DWGS RELEASED FOR EXEC. 20URA/URD",5121,"HK1003-Rev.0E-3",TT_Mile,"55902",-,-,-,100,TK_Complete,25/06/2021,25/06/2021,25/06/2021,25/06/2021,"SI--URA2-70 FS,SI--URA2-82 FS","SI--URA2-70,SI--URA2-82","SI20URA5-10 SS","SI20URA5-10",46,46,46,46,10,10,10,10,19,,"HK1003 -Blackpoint D2 - Rev.0E DD30092021"
1-683,SI--URA2-60,"COOLING TOWER COMPONENTS (SPIG) SUBSTRUCTURE-20URA/URD",5121,"HK1003-Rev.0E-3",TT_FinMile,"55902",-,-,-,100,TK_Complete,27/07/2021,27/07/2021,27/07/2021,27/07/2021,"SI20URA2B02 FS,SI--URA2-99 FS","SI20URA2B02,SI--URA2-99","SI20URA2-74 FS,SI20URA2-15 FS","SI20URA2-74,SI20URA2-15",51,51,51,51,12,12,12,12,23,,"HK1003 -Blackpoint D2 - Rev.0E DD30092021"
1-684,SI--HB-2A40,"(MS2)  DESIGN LOAD DATA, DIMENSIONS HRSG AND STACK",5121,"HK1003-Rev.0E-3",TT_FinMile,"55902",-,-,-,100,TK_Complete,15/01/2021,15/01/2021,15/01/2021,15/01/2021,"SI--HB-2-15 FS,SI-----1-05 FS","SI--HB-2-15,SI-----1-05","SI--UHA2-40 FS,SI--HB-2A65 FS","SI--UHA2-40,SI--HB-2A65",23,23,23,23,5,5,5,5,2,,"HK1003 -Blackpoint D2 - Rev.0E DD30092021"
1-685,SI--PAC2B45,"DESIGN DATA SHEETS FOR CW PUMP PAC",5121,"HK1003-Rev.0E-3",TT_Mile,"55902",-,-,-,100,TK_Complete,30/01/2021,30/01/2021,30/01/2021,30/01/2021,"SI--P--2-35 SS,SI--PAC2B86 FS","SI--P--2-35,SI--PAC2B86","SI--PAC2B85 SS,SI--PAC2B80 FS","SI--PAC2B85,SI--PAC2B80",26,26,26,26,6,6,6,6,3,,"HK1003 -Blackpoint D2 - Rev.0E DD30092021"
1-686,SI20HB-6A17,"ERECTION MAIN STEEL COLUMNS INCL. BOTTOM PANELS & TOP CROSS GIRDER HRSG20",5121,"HK1003-Rev.0E-3",TT_Task,"55902",-,-,-,0,TK_NotStart,17/01/2022,,04/03/2022,,"SI--HB-2B05 FS,SI--HB-2B62 FS,SI20UHA5-45 FS,SI20HB-4A41 FS,SI--HA-2A01 FS,SI--2226-66 FF,SI20UMX5-45 FS,SI20UEY5-100 FS,SI20UHW5-75 FS,SI20UBA5-55 SS,SI20ULA5-45 FS,SI20UMY5-45 FS,SI20HB-6A18 FS","SI--HB-2B05,SI--HB-2B62,SI20UHA5-45,SI20HB-4A41,SI--HA-2A01,SI--2226-66,SI20UMX5-45,SI20UEY5-100,SI20UHW5-75,SI20UBA5-55,SI20ULA5-45,SI20UMY5-45,SI20HB-6A18","SI20HB-6A17& SS,SI20HA-6C25 FS,SI20HB-6C25 SS,SI20HA-6-17# SS,SI20HB-6-19 SS,SI20HB-6-18 FF","SI20HB-6A17&,SI20HA-6C25,SI20HB-6C25,SI20HA-6-17#,SI20HB-6-19,SI20HB-6-18",76,,82,,17,,19,,46,56,"HK1003 -Blackpoint D2 - Rev.0E DD30092021"
1-687,SI20HB-8-12,"(TOP-20HBK) HRSG EXHAUST GAS SYSTEM HRSG20",5121,"HK1003-Rev.0E-3",TT_FinMile,"55902",-,-,-,0,TK_NotStart,17/04/2023,,17/04/2023,,"SI20HB-6C23 FS,SI20HB-6-43 FS,SI20HB-6-46 FS,SI20HB-8-18 FS,SI20HB-6-42 FS,SI20HB-6-49 FS","SI20HB-6C23,SI20HB-6-43,SI20HB-6-46,SI20HB-8-18,SI20HB-6-42,SI20HB-6-49","SI20HB-8-25 FS","SI20HB-8-25",141,,141,,32,,32,,95,144,"HK1003 -Blackpoint D2 - Rev.0E DD30092021"
1-688,SI20MKA6E16,"PLACING OF GENERATOR SKIDS MKA",5121,"HK1003-Rev.0E-3",TT_Task,"55902",-,-,-,0,TK_NotStart,09/08/2022,,29/08/2022,,"SI20MKA6-12 FS,SI20MKA6-55 FS,SI20MB-6-10 SS","SI20MKA6-12,SI20MKA6-55,SI20MB-6-10","SI20MKA6-40 FS","SI20MKA6-40",105,,108,,24,,25,,77,1696,"HK1003 -Blackpoint D2 - Rev.0E DD30092021"
1-689,SI20MKA6-50,"GENERATOR READY FOR PREPARATION LUBE OIL FLUSHING MKA",5121,"HK1003-Rev.0E-3",TT_Mile,"55902",-,-,-,0,TK_NotStart,24/09/2022,,24/09/2022,,"SI20MKA6-34 FS","SI20MKA6-34","SI20MAV6-55 FS","SI20MAV6-55",112,,112,,26,,26,,81,1232,"HK1003 -Blackpoint D2 - Rev.0E DD30092021"
1-690,SI20MKA6-80,"GENERATOR COMPLETE ERECTION (SLIPRING, BEARINGS, SHAFT SEALING; BEARING BRACKET OIL SEALS; GROUNDING BRUSHES) MKA",5121,"HK1003-Rev.0E-3",TT_Task,"55902",-,-,-,0,TK_NotStart,22/02/2023,,06/04/2023,,"SI20MKA6F15 FS,SI20MKA6-34 FS","SI20MKA6F15,SI20MKA6-34","SI20MKA8-70 FS,SI20MKA8-10 FS,SI20MKA8-10 FF","SI20MKA8-70,SI20MKA8-10,SI20MKA8-10",133,,139,,31,,32,,91,288,"HK1003 -Blackpoint D2 - Rev.0E DD30092021"
1-691,SI20MA-6C55,"PERFORM AXIAL AND RADIAL CLEARANCE CHECK OF K-TURBINE MA",5121,"HK1003-Rev.0E-3",TT_Task,"55902",-,-,-,0,TK_NotStart,15/08/2022,,16/08/2022,,"SI20MA-6C20 FS","SI20MA-6C20","SI20MA-6A60 FS,SI20MA-6A20 FS,SI20MA-6A35 FS,SI20MA-6A15 FS,SI20MA-6B14 FS,SI20MKA6F03 FS,SI20MA-6A25 FS","SI20MA-6A60,SI20MA-6A20,SI20MA-6A35,SI20MA-6A15,SI20MA-6B14,SI20MKA6F03,SI20MA-6A25",106,,106,,24,,24,,77,272,"HK1003 -Blackpoint D2 - Rev.0E DD30092021"
1-692,SI20MA-6C20,"SET DOWN K-SHAFT IN BEARINGS AND ALIGNMENT OF SHAFT MA",5121,"HK1003-Rev.0E-3",TT_Task,"55902",-,-,-,0,TK_NotStart,08/08/2022,,14/08/2022,,"SI20MA-6C15 FS,SP20MA-4C44 FS","SI20MA-6C15,SP20MA-4C44","SI20MA-6C55 FS","SI20MA-6C55",105,,106,,24,,24,,77,272,"HK1003 -Blackpoint D2 - Rev.0E DD30092021"
1-693,SI20UEY2-60,"(MS3) CONCRETE STRUCTURE FINAL DIMENSIONS, LOADS AVAILABLE 20UEY03-05",5121,"HK1003-Rev.0E-3",TT_FinMile,"55902",-,-,-,100,TK_Complete,02/06/2021,02/06/2021,02/06/2021,02/06/2021,"SI-----2G60 FS,SI--UMY2-60 FS","SI-----2G60,SI--UMY2-60","SI20UEY2-77 FS,SI20UEY2-70 FS,SI20UEY2-86 FS","SI20UEY2-77,SI20UEY2-70,SI20UEY2-86",43,43,43,43,10,10,10,10,15,,"HK1003 -Blackpoint D2 - Rev.0E DD30092021"
1-694,SI--3332-01,"PROJECT SETUP P&ID",5121,"HK1003-Rev.0E-3",TT_Mile,"55902",-,-,-,100,TK_Complete,01/08/2020,01/08/2020,01/08/2020,01/08/2020,"SI20---2M10 SS,SI-----1-03 SS","SI20---2M10,SI-----1-03","SI--3332-63 FS,SI--3332-62 FS,SI--3332-61 FS,SI--3332-02 FS","SI--3332-63,SI--3332-62,SI--3332-61,SI--3332-02",0,0,0,0,0,0,0,0,0,,"HK1003 -Blackpoint D2 - Rev.0E DD30092021"
1-695,SI--LCB2B75,"TECHNICAL CLARIFCATION / PREP. RFQ CONDENSATE EXTRACTION PUMPS LCB",5121,"HK1003-Rev.0E-3",TT_Task,"55902",-,-,-,100,TK_Complete,15/01/2021,15/01/2021,04/02/2021,04/02/2021,"SI--3331-32 FS,SI--L--2-05 SS,SI20LCB2B92 FF,SI-----1-03 FS,SI-----1-01 FS,SI-----1-05 FS","SI--3331-32,SI--L--2-05,SI20LCB2B92,SI-----1-03,SI-----1-01,SI-----1-05","SI--LCB2B20 FS,SI--LCB2B80 FS,SI--LCB2B60 FS","SI--LCB2B20,SI--LCB2B80,SI--LCB2B60",23,23,26,26,5,5,6,6,2,,"HK1003 -Blackpoint D2 - Rev.0E DD30092021"
1-696,SI20BTA2-15,"BASIC DESIGN / SPECIFICATION BATTERIES & RACKS BTA",5121,"HK1003-Rev.0E-3",TT_Task,"55902",-,-,-,100,TK_Complete,30/06/2021,30/06/2021,11/08/2021,11/08/2021,"SI--3331-32 FS,SI--3332-26 FS,SI--3332-27 FS,SP--B--2-50 FS,SI20BFA2-85 FS","SI--3331-32,SI--3332-26,SI--3332-27,SP--B--2-50,SI20BFA2-85","SI20BTA2-75 FS","SI20BTA2-75",47,47,53,53,11,11,12,12,19,,"HK1003 -Blackpoint D2 - Rev.0E DD30092021"
1-697,SI--2226-58,"KKS PLANT LABELLING COMPLETE",5121,"HK1003-Rev.0E-3",TT_FinMile,"55902",-,-,-,0,TK_NotStart,03/09/2023,,03/09/2023,,"SI--2226-57 FS,SI--2226-56 FS,SI--2226-55 FS","SI--2226-57,SI--2226-56,SI--2226-55","SI20M--9-70 FF","SI20M--9-70",161,,161,,37,,37,,99,208,"HK1003 -Blackpoint D2 - Rev.0E DD30092021"
1-698,SI--2226-55,"ERECTION KKS PLANT LABELLING (REQUIRED FOR BACK ENERGISING)",5121,"HK1003-Rev.0E-3",TT_Task,"55902",-,-,-,0,TK_NotStart,25/01/2023,,21/03/2023,,"SI--2223-54 FS,SI20BZK7-28 FS,SI20BZK7A27 FS,SI20BZK7A28 FF,SI20BZK7B24 SS,SI20BZK7B27 FS,SI20BZK7C33 FS,SI20BZK7E25 SS,SI20UBA7-104 FS,SI20BZK7A26 FF,SI20BZK7D25 FS,SI20BZK7F26 FF,SI20UBA7-25 FS,SI--PEI7-20 FS,SI20UEY5-45 FS,SI--B--2-68 FS,SI20BZK4-41 FS,SI20BZK7-25 FS,SI20UBA7-17 SS,SI20UCA7-15 FS,SI--B--7-55 FS,SI20BZP7-110 FS,SI20UBA4-42 FS,SI--B--2-93 FS","SI--2223-54,SI20BZK7-28,SI20BZK7A27,SI20BZK7A28,SI20BZK7B24,SI20BZK7B27,SI20BZK7C33,SI20BZK7E25,SI20UBA7-104,SI20BZK7A26,SI20BZK7D25,SI20BZK7F26,SI20UBA7-25,SI--PEI7-20,SI20UEY5-45,SI--B--2-68,SI20BZK4-41,SI20BZK7-25,SI20UBA7-17,SI20UCA7-15,SI--B--7-55,SI20BZP7-110,SI20UBA4-42,SI--B--2-93","SI20B--8-50 FS,SI--2226-58 FS,SI--2226-57 FS,SI--2226-56 SS","SI20B--8-50,SI--2226-58,SI--2226-57,SI--2226-56",129,,137,,30,,32,,89,80,"HK1003 -Blackpoint D2 - Rev.0E DD30092021"
1-699,SI20SGA8-10,"(TOP-20SGA-03) FF INDOOR HYDRANTS FOR UHA, ULA AND UMC BUILDINGS",5121,"HK1003-Rev.0E-3",TT_FinMile,"55902",-,-,-,0,TK_NotStart,03/04/2023,,03/04/2023,,"SI20SGA8B27 FS,SI20SGY6-15 FS","SI20SGA8B27,SI20SGY6-15","SI20SGA8-26 SS","SI20SGA8-26",139,,139,,32,,32,,94,536,"HK1003 -Blackpoint D2 - Rev.0E DD30092021"
1-700,SI20CPC8-10,"(TOP-20CP-WS) INTERFACE PANELS IN FUNCTION AREA WATER / STEAM CYCLE",5121,"HK1003-Rev.0E-3",TT_FinMile,"55902",-,-,-,0,TK_NotStart,27/02/2023,,27/02/2023,,"SI--B--2-68 FS,SI20UBA4-42 FS,SI20BZP7-160 FS,SI--9998-20& SS,SI20UBA7-104 FS,SI20UBA7-17 FS,SI--B--2-93 FS","SI--B--2-68,SI20UBA4-42,SI20BZP7-160,SI--9998-20&,SI20UBA7-104,SI20UBA7-17,SI--B--2-93","SI20CPC8-27 FS","SI20CPC8-27",134,,134,,31,,31,,92,72,"HK1003 -Blackpoint D2 - Rev.0E DD30092021"
1-701,SP20MA-3D80,"STEAM TURBINE FOUNDATION PARTS EX WORKS (DG01060000)",5121,"HK1003-Rev.0E-3",TT_Mile,"55902",-,-,-,100,TK_Complete,16/06/2021,16/06/2021,16/06/2021,16/06/2021,"SP20MA-3-89 SS","SP20MA-3-89","SI20UMC2B-30 SS","SI20UMC2B-30",45,45,45,45,10,10,10,10,17,,"HK1003 -Blackpoint D2 - Rev.0E DD30092021"
1-702,SI20URA5-10,"(H) START PLACING FORMWORK 20URA",5121,"HK1003-Rev.0E-3",TT_Mile,"55902",-,-,-,0,TK_NotStart,01/10/2021,,01/10/2021,,"SI20URA5-05 FS,SI--URA2-55 SS,SI-----5-21& FS,SI20PUR2J93 FS,SI--URA2-92 FS","SI20URA5-05,SI--URA2-55,SI-----5-21&,SI20PUR2J93,SI--URA2-92","SI20URA5-17 FS,SI20URD5-10 FS,SI20URA5-19 FS","SI20URA5-17,SI20URD5-10,SI20URA5-19",60,,60,,14,,14,,30,1352,"HK1003 -Blackpoint D2 - Rev.0E DD30092021"
1-703,SI20PCB7M15,"ELECTRICAL ERECTION SERVICE COOLING WATER EXTRACTION PUMP PCB",5121,"HK1003-Rev.0E-3",TT_Task,"55902",-,-,-,0,TK_NotStart,23/10/2022,,05/11/2022,,"SI20BZK7E25 SS,SI20PCB6M10 FS,SI20PDB7B16 FS","SI20BZK7E25,SI20PCB6M10,SI20PDB7B16","SI20PCB8M10 FS,SI20PAH7-25 FS,SI20BZK7D11# FF,SI20BZK7D11# SS","SI20PCB8M10,SI20PAH7-25,SI20BZK7D11#,SI20BZK7D11#",116,,118,,27,,27,,84,1448,"HK1003 -Blackpoint D2 - Rev.0E DD30092021"
1-704,SI20BFA4-10,"TRANSPORT TO WORKSHOP LV- / DC-SWITCHGEAR BFA/BFB/BMA/BUA/BUB/BUC (TO ST. INGBERT-INSTALL INTO ELECTRICAL MODULES)",5121,"HK1003-Rev.0E-3",TT_Task,"55902",-,-,-,0,TK_NotStart,17/01/2022,,18/01/2022,,"SI20BFA3-70 FS,SI20BFA3-25 FS","SI20BFA3-70,SI20BFA3-25","SI20UBA4-52 FS,SI20UBA4-64 FS","SI20UBA4-52,SI20UBA4-64",76,,76,,17,,17,,46,688,"HK1003 -Blackpoint D2 - Rev.0E DD30092021"
1-705,SI20BFA3-25,"MANUFACTURING / SHOP TEST LV- / DC-SWITCHGEAR BFA/BFB/BMA/BUA/BUB/BUC",5121,"HK1003-Rev.0E-3",TT_Task,"55902",-,-,-,17,TK_Active,08/09/2021,08/09/2021,16/01/2022,,"SI20BFA2-86 FS,SI20BFA2-85 FS,SI--B--2A55 FS,SI--2222-30 FS,SI20BFA2-25 FS","SI20BFA2-86,SI20BFA2-85,SI--B--2A55,SI--2222-30,SI20BFA2-25","SI20BFA3-70 FS,SI20BFA4-10 FS","SI20BFA3-70,SI20BFA4-10",57,57,76,,13,13,17,,29,688,"HK1003 -Blackpoint D2 - Rev.0E DD30092021"
1-706,SI20SG-3-80,"(RFS) READY FOR SHIPMENT FIRE FIGHTING SYSTEMS 20SGC/SGE/SGF/SGJ",5121,"HK1003-Rev.0E-3",TT_FinMile,"55902",-,-,-,0,TK_NotStart,24/03/2022,,24/03/2022,,"SI20SG-4-10 FS","SI20SG-4-10","SI20SG-4-25 FS","SI20SG-4-25",85,,85,,20,,20,,53,1408,"HK1003 -Blackpoint D2 - Rev.0E DD30092021"
1-707,SI20CPB8-25,"COMMISSIONING ET200 STATIONS ST CJJ",5121,"HK1003-Rev.0E-3",TT_Task,"55902",-,-,-,0,TK_NotStart,11/04/2023,,17/04/2023,,"SI20CPB8-10 FS,SI20CJ-8-25 FS,SI20CPD8-36 FS,SI20B--8-50 FS,SI20BZK7-25 FS,SI20BZK4-41 FS,SI--B--7-55 FS,SI20BZK7A27 FS,SI--B--2-68 FS,SI20BZP7-110 FS,SI20UBA4-42 FS,SI--B--2-93 FS,SI-PM-40 FS,SI20CPA8-25 FS","SI20CPB8-10,SI20CJ-8-25,SI20CPD8-36,SI20B--8-50,SI20BZK7-25,SI20BZK4-41,SI--B--7-55,SI20BZK7A27,SI--B--2-68,SI20BZP7-110,SI20UBA4-42,SI--B--2-93,SI-PM-40,SI20CPA8-25","SI20MAG8-25 FS,SI20CPB8A30 FS,SI20MAD8-25 FS,SI20MAX8-25 FS,SI20MAL8-25 FS,SI20MA-8-25 FS,SI20MAW8-25 FS,SI20MAV8-25 FS,SI20MKA8-25 FS,SI20MAJ8-25 FS,SI20MA-8B25 FS","SI20MAG8-25,SI20CPB8A30,SI20MAD8-25,SI20MAX8-25,SI20MAL8-25,SI20MA-8-25,SI20MAW8-25,SI20MAV8-25,SI20MKA8-25,SI20MAJ8-25,SI20MA-8B25",140,,141,,32,,32,,94,32,"HK1003 -Blackpoint D2 - Rev.0E DD30092021"
1-708,SI20UBA5-75,"(RFE) FOUNDATION 20UBA7910/20",5121,"HK1003-Rev.0E-3",TT_FinMile,"55902",-,-,-,0,TK_NotStart,07/08/2022,,07/08/2022,,"SI20UBA5-15 FS,SI20UBA7-26 FS,SI20UBA5-15.09 FS","SI20UBA5-15,SI20UBA7-26,SI20UBA5-15.09","SI20UBA5B10 FS","SI20UBA5B10",105,,105,,24,,24,,77,656,"HK1003 -Blackpoint D2 - Rev.0E DD30092021"
1-709,SI20UBA5-15,"CONSTRUCTION FOUNDATION 20UBA7910/20",5121,"HK1003-Rev.0E-3",TT_Task,"55902",-,-,-,0,TK_NotStart,30/04/2022,,03/06/2022,,"SI20UBA5-10 FS,SI--2222-132 FS","SI20UBA5-10,SI--2222-132","SI20UBA5-75 FS,SI20BAW5A16 FS,SI20UBA5-85 FS,SI20UBA5B10 FS,SI20UBA5-85 FF,SI20UBA5-87 FS,SI20UBA7-15 FS,SI20UBA7-25 FS,SI20BZP7-50 FS,SI20UBA5-102 FS","SI20UBA5-75,SI20BAW5A16,SI20UBA5-85,SI20UBA5B10,SI20UBA5-85,SI20UBA5-87,SI20UBA7-15,SI20UBA7-25,SI20BZP7-50,SI20UBA5-102",91,,95,,21,,22,,60,968,"HK1003 -Blackpoint D2 - Rev.0E DD30092021"
1-710,SI20BZK4-25,"TRANSPORT MV/LV CABLES20/00BZK (LOT 1)",5121,"HK1003-Rev.0E-3",TT_Task,"55902",-,-,-,0,TK_NotStart,18/05/2022,,12/07/2022,,"SI20BZK3-80 FS","SI20BZK3-80","SI20BZK4-40 FS","SI20BZK4-40",93,,101,,21,,23,,65,472,"HK1003 -Blackpoint D2 - Rev.0E DD30092021"
1-711,SI20SG-4-41,"ON SITE FIRE FIGHTING SYSTEMS 20SGC/SGE/SGF/SGJ",5121,"HK1003-Rev.0E-3",TT_FinMile,"55902",-,-,-,0,TK_NotStart,19/05/2022,,19/05/2022,,"SI20SG-4-25 FS","SI20SG-4-25","SI--SGM6-15 FS,SI20SGM6-15 FS,SI20SGJ6-5 FS,SI20SGC6-15 FS,SI20SGC6J15 FS,SI20SGJ6-5 FF,SI20SGJ6-16 FS,SI20SGM6-15 FF,SI20SGM6-20 FS,SI20SGM6-18 FS,SI20SGM6-17 FS,SI20SGM6-21 FS,SI20SGC6J23 FS,SI20SGC6J22 FS,SI20SGC6J21 FS,SI20SGC6J24 FS,SI20SGC6J25 FS,SI20SGC6J26 FS,SI20SGC6J28 FS,SI20SGC6J27 FS,SI20SGC6-15 FF,SI20SGC6J17 FS,SI20SGC6J15 FF,SI20SGC6J20 FS,SI20SGC6J16 FS,SI20SGC6J18 FS,SI20XKA8-10 FS","SI--SGM6-15,SI20SGM6-15,SI20SGJ6-5,SI20SGC6-15,SI20SGC6J15,SI20SGJ6-5,SI20SGJ6-16,SI20SGM6-15,SI20SGM6-20,SI20SGM6-18,SI20SGM6-17,SI20SGM6-21,SI20SGC6J23,SI20SGC6J22,SI20SGC6J21,SI20SGC6J24,SI20SGC6J25,SI20SGC6J26,SI20SGC6J28,SI20SGC6J27,SI20SGC6-15,SI20SGC6J17,SI20SGC6J15,SI20SGC6J20,SI20SGC6J16,SI20SGC6J18,SI20XKA8-10",93,,93,,21,,21,,65,1408,"HK1003 -Blackpoint D2 - Rev.0E DD30092021"
1-712,SP20MBL2-05,"P&I DIAGRAMS AIR INTAKE MBL",5121,"HK1003-Rev.0E-3",TT_Mile,"55902",-,-,-,100,TK_Complete,26/04/2021,26/04/2021,26/04/2021,26/04/2021,"SP20MBL2-81 SS,SI-----1-04 SS","SP20MBL2-81,SI-----1-04","SI--M--2D20 SS,SI---4P2A10 SS","SI--M--2D20,SI---4P2A10",38,38,38,38,8,8,8,8,10,,"HK1003 -Blackpoint D2 - Rev.0E DD30092021"
1-713,SP20MBL2-95,"LAYOUT COMPONENT DRAWING AIR INTAKE MBL",5121,"HK1003-Rev.0E-3",TT_Mile,"55902",-,-,-,100,TK_Complete,07/06/2021,07/06/2021,07/06/2021,07/06/2021,"SP20MBL2-85 FS","SP20MBL2-85","SP20MBL3-25 FS,SP20MBL2-96 FS","SP20MBL3-25,SP20MBL2-96",44,44,44,44,10,10,10,10,16,,"HK1003 -Blackpoint D2 - Rev.0E DD30092021"
1-714,SP20MBL2-87,"INSPECTION PLAN AIR INTAKE MBL",5121,"HK1003-Rev.0E-3",TT_Mile,"55902",-,-,-,100,TK_Complete,02/09/2021,02/09/2021,02/09/2021,02/09/2021,"SP20MBL2-85 FS,SP20MBL2-96 SS","SP20MBL2-85,SP20MBL2-96","SP20MBL3-25 FS","SP20MBL3-25",56,56,56,56,13,13,13,13,28,,"HK1003 -Blackpoint D2 - Rev.0E DD30092021"
1-715,SP20MBL2-60,"FOUNDATION LOADS AIR INTAKE MBL",5121,"HK1003-Rev.0E-3",TT_Mile,"55902",-,-,-,100,TK_Complete,03/05/2021,03/05/2021,03/05/2021,03/05/2021,"SP20MBL2-85 FS","SP20MBL2-85","SI20UMC2B10 FS,SI--UMC2B92 FS","SI20UMC2B10,SI--UMC2B92",39,39,39,39,9,9,9,9,11,,"HK1003 -Blackpoint D2 - Rev.0E DD30092021"
1-716,SI20GHC8H25,"(TOP-20GHC) DEMIN WATER SYSTEM",5121,"HK1003-Rev.0E-3",TT_FinMile,"55902",-,-,-,0,TK_NotStart,30/03/2023,,30/03/2023,,"SI20GHC7H15 FS,SI20GHC6H17 FS,SI20GHC6H15 FS,SI20GHC7H17 FS,SI20BZK7B27 FS,SI--9998-23& FS","SI20GHC7H15,SI20GHC6H17,SI20GHC6H15,SI20GHC7H17,SI20BZK7B27,SI--9998-23&","SI20MB-9-05 FS,SI20GHC8H16 FS","SI20MB-9-05,SI20GHC8H16",138,,138,,32,,32,,93,168,"HK1003 -Blackpoint D2 - Rev.0E DD30092021"
1-717,SI20EK-7H15,"ELECTRICAL ERECTION / VALVES 20EKG",5121,"HK1003-Rev.0E-3",TT_Task,"55902",-,-,-,0,TK_NotStart,17/03/2023,,30/03/2023,,"SI20EKG6I15 FF,SI20EK-7I15 FF,SI20BZP7D18 FS,SI20BZP7D19 FS,SI20BZP7-5 FS,SI20BZP7-196 FS,SI20BZP7-174 FS,SI20UMY6M10 FS,SI20UMY6M11 FS,SI20UMY6M12 FS,SI--2227-68 FS,SI--BZP2-05 FS,SI--PEE7-20 FS,SI--BZP4B40 FS,SI20BZP7-181 FS,SI20EKG6I16 FF","SI20EKG6I15,SI20EK-7I15,SI20BZP7D18,SI20BZP7D19,SI20BZP7-5,SI20BZP7-196,SI20BZP7-174,SI20UMY6M10,SI20UMY6M11,SI20UMY6M12,SI--2227-68,SI--BZP2-05,SI--PEE7-20,SI--BZP4B40,SI20BZP7-181,SI20EKG6I16","SI20EK-8H14 FS,SI20EK-8H13 FS,SI20BZK7D11# FF,SI20BZK7D11# SS","SI20EK-8H14,SI20EK-8H13,SI20BZK7D11#,SI20BZK7D11#",136,,138,,31,,32,,92,368,"HK1003 -Blackpoint D2 - Rev.0E DD30092021"
1-718,SI20UBA5-17,"CONSTRUCTION FOUNDATION  20UBA7xxx",5121,"HK1003-Rev.0E-3",TT_Task,"55902",-,-,-,0,TK_NotStart,26/02/2022,,29/04/2022,,"SI20UMC5B90 FF,SI20UBA5-12 FS","SI20UMC5B90,SI20UBA5-12","SI20UBA5-47 FS,SI20BAW5B15 FF,SI20UBD5-05 FS,SI20UTG5-20 FS,SI20UBA5-90 FS,SI20UBY5-06 FS,SI20UBA5B61 FS,SI20UBA5-90 FF,SI20BZP7-160 FS,SI20UBA5-101 FS,SI20UBN5-5.00 FS,SI20UBA5-17.0 SS","SI20UBA5-47,SI20BAW5B15,SI20UBD5-05,SI20UTG5-20,SI20UBA5-90,SI20UBY5-06,SI20UBA5B61,SI20UBA5-90,SI20BZP7-160,SI20UBA5-101,SI20UBN5-5.00,SI20UBA5-17.0",82,,90,,19,,21,,51,424,"HK1003 -Blackpoint D2 - Rev.0E DD30092021"
1-719,SI--UMY2-60,"(MS3) CONCRETE STRUCTURE FINAL DIMENSIONS, LOADS AVAILABLE 20ULY/UMY",5121,"HK1003-Rev.0E-3",TT_FinMile,"55902",-,-,-,100,TK_Complete,08/05/2021,08/05/2021,08/05/2021,08/05/2021,"SI--UM-2-35 FS","SI--UM-2-35","SI--UMY2-30 FS,SI--UMY2-77 FS,SI20UEY2-60 FS,SI20ULY2-65 FS,SI20UQY2-81 FS,SI20UEY2-86 FS,SI20ULY2-5 FS","SI--UMY2-30,SI--UMY2-77,SI20UEY2-60,SI20ULY2-65,SI20UQY2-81,SI20UEY2-86,SI20ULY2-5",40,40,40,40,9,9,9,9,11,,"HK1003 -Blackpoint D2 - Rev.0E DD30092021"
1-720,SI20MB-7-15,"INSTALLATION EMERGENCY PUSH BUTTON GT20",5121,"HK1003-Rev.0E-3",TT_Task,"55902",-,-,-,0,TK_NotStart,12/02/2023,,18/02/2023,,"SI20BZK7F26 FF","SI20BZK7F26","SI20MBA8-10 FS","SI20MBA8-10",132,,133,,30,,31,,90,552,"HK1003 -Blackpoint D2 - Rev.0E DD30092021"
1-721,SI20UMC5A25,"TURBOSET FOUNDATION (PLINTHS / WALLS) 20UMC",5121,"HK1003-Rev.0E-3",TT_Task,"55902",-,-,-,0,TK_NotStart,04/10/2021,,14/11/2021,,"SI20UMC5A15 FS,SI20UMC2B-50 FS,SP20MAG4B40 FS,SI20UMC5A15.15 FS","SI20UMC5A15,SI20UMC2B-50,SP20MAG4B40,SI20UMC5A15.15","SI20UMC5A45 FS,SI20UMC5A15# FF,SI20UMC5A46 FS,SI20UMX5-05 SS,SI20UEY5-85 FS,SI20UPY5P05.00 SS","SI20UMC5A45,SI20UMC5A15#,SI20UMC5A46,SI20UMX5-05,SI20UEY5-85,SI20UPY5P05.00",61,,67,,14,,15,,31,160,"HK1003 -Blackpoint D2 - Rev.0E DD30092021"
1-722,SI20BAW2-28,"QUOTATION PHASE FOR LIGHTNING PROTECTION",5121,"HK1003-Rev.0E-3",TT_Task,"55902",-,-,-,0,TK_NotStart,07/01/2022,,20/01/2022,,"SI20BAW2-27 FS,SI20BAW2-75 FS","SI20BAW2-27,SI20BAW2-75","SI20BAW2-85 FS","SI20BAW2-85",74,,76,,17,,17,,44,2016,"HK1003 -Blackpoint D2 - Rev.0E DD30092021"
1-723,SI20UMX5-10,"(H) START PLACING FORMWORK 20UMX-To be deleted",5121,"HK1003-Rev.0E-3",TT_Mile,"55902",-,-,-,0,TK_NotStart,21/12/2021,,21/12/2021,,"SI20UMX5-05 FS,SI-----5-21& FS,SI--UMX2-87 FS","SI20UMX5-05,SI-----5-21&,SI--UMX2-87","SI20UMX5-15 FS","SI20UMX5-15",72,,72,,16,,16,,43,104,"HK1003 -Blackpoint D2 - Rev.0E DD30092021"
1-724,SI20UMX5-05,"WORK PREPARATION, EXCAVATION 20UMX- To be deleted",5121,"HK1003-Rev.0E-3",TT_Task,"55902",-,-,-,0,TK_NotStart,07/12/2021,,20/12/2021,,"SI--UMX2-75 FS,SI20UMC5A10 FS,SI-----5-22 FS,SI20UMC5A25 SS,SI-----5-21& FS,SI-----5-20 FS,SI20UHA5-45 FF,SI-P222-84 FS,SI--UMX2-86 FS","SI--UMX2-75,SI20UMC5A10,SI-----5-22,SI20UMC5A25,SI-----5-21&,SI-----5-20,SI20UHA5-45,SI-P222-84,SI--UMX2-86","SI20UMX5-10 FS,SI-P222-131# FF,SI-P222-131# SS","SI20UMX5-10,SI-P222-131#,SI-P222-131#",70,,72,,16,,16,,41,104,"HK1003 -Blackpoint D2 - Rev.0E DD30092021"
1-725,SI20--P6A00&,"START PIPE ERECTION WSC",5121,"HK1003-Rev.0E-3",TT_Mile,"55902",-,-,-,0,TK_NotStart,19/06/2022,,19/06/2022,,"SI-----1-05 FS","SI-----1-05","SI20PAH6H15 SS,SI20LBG6A15 SS,SI20LCA6A16 SS,SI20LCW6H15 SS,SI20PGB6H17 SS,SI20PAB6A15 SS,SI20LBB6J15 SS,SI20PAB6A17 FS,SI20LCA6A15 FS","SI20PAH6H15,SI20LBG6A15,SI20LCA6A16,SI20LCW6H15,SI20PGB6H17,SI20PAB6A15,SI20LBB6J15,SI20PAB6A17,SI20LCA6A15",98,,98,,22,,22,,70,616,"HK1003 -Blackpoint D2 - Rev.0E DD30092021"
1-726,SI20MB-6-15&,"START COMPONENT ERECTION IN 20UMC",5121,"HK1003-Rev.0E-3",TT_Mile,"55902",-,-,-,0,TK_NotStart,16/07/2022,,16/07/2022,,"SI20SMM6-70 FS,SI20SMM6-70 SS","SI20SMM6-70,SI20SMM6-70","SI20MB-4-25 FS,SI20MBL6-05 SS,SI20MB-6-15 FS,SI20MB-6-00 FS","SI20MB-4-25,SI20MBL6-05,SI20MB-6-15,SI20MB-6-00",102,,102,,23,,23,,73,184,"HK1003 -Blackpoint D2 - Rev.0E DD30092021"
1-727,SI20UMC5A45&,"TURBOSET FOUNDATION READY FOR ERECTION 20UMC",5121,"HK1003-Rev.0E-3",TT_FinMile,"55902",-,-,-,0,TK_NotStart,28/11/2021,,28/11/2021,,"SI-----1-05 FS","SI-----1-05","SI20UMC5A45 FS","SI20UMC5A45",69,,69,,16,,16,,39,944,"HK1003 -Blackpoint D2 - Rev.0E DD30092021"
1-728,SI20LCL7B15,"ELECTRICAL ERECTION BOILER BLOWDOWN PUMP 20LCL",5121,"HK1003-Rev.0E-3",TT_Task,"55902",-,-,-,0,TK_NotStart,20/08/2022,,08/09/2022,,"SI20LCL6B15 FS","SI20LCL6B15","SI20LCL8B10 FS,SI20BZK7D11# FF,SI20BZK7D11# SS","SI20LCL8B10,SI20BZK7D11#,SI20BZK7D11#",107,,109,,24,,25,,78,1792,"HK1003 -Blackpoint D2 - Rev.0E DD30092021"
1-729,SP20MAD3-25,"MANUFACTURING ST BEARINGS 20MAD",5121,"HK1003-Rev.0E-3",TT_Task,"55902",-,-,-,10,TK_Active,10/09/2021,10/09/2021,01/04/2022,,"SP20MA-2-81 SS,SI-----1-04 SS,SP20MAD3-82 FS,SP20MAD3-82 FF","SP20MA-2-81,SI-----1-04,SP20MAD3-82,SP20MAD3-82","SP20MAD3-80 FS,SP20MAD3-70 FS","SP20MAD3-80,SP20MAD3-70",57,57,86,,13,13,20,,29,32,"HK1003 -Blackpoint D2 - Rev.0E DD30092021"
1-730,SI20MKA4-40,"(OTD-OS) ON SITE GENERATOR 20MKA",5121,"HK1003-Rev.0E-3",TT_FinMile,"55902",-,-,-,0,TK_NotStart,23/07/2022,,23/07/2022,,"SI20MKA4-25 FS,SI-P222-101 FS","SI20MKA4-25,SI-P222-101","SI20MKA6-12 SS,SI20MKQ4-40 FS","SI20MKA6-12,SI20MKQ4-40",103,,103,,24,,24,,74,376,"HK1003 -Blackpoint D2 - Rev.0E DD30092021"
1-731,SI20BAW5C15,"ERECTION OUTDOOR EARTHING/LIGHTNING 00UEN03/04 AREA",5121,"HK1003-Rev.0E-3",TT_Task,"55902",-,-,-,0,TK_NotStart,08/06/2022,,19/07/2022,,"SI--BAW4-40 FS,SI--BAW2-05 FS,SI20UEN5-23 FS","SI--BAW4-40,SI--BAW2-05,SI20UEN5-23","SI--BAW8A10 FS","SI--BAW8A10",96,,102,,22,,23,,69,2080,"HK1003 -Blackpoint D2 - Rev.0E DD30092021"
1-732,SI--LCB2B60,"(DF) INPUT FOR MS3 CONDENSATE EXTRACTION PUMPS LCB",5121,"HK1003-Rev.0E-3",TT_FinMile,"55902",-,-,-,100,TK_Complete,13/05/2021,13/05/2021,13/05/2021,13/05/2021,"SI--LCB2B85 FS,SI-----1-01 SS,SI--LCB2B75 FS","SI--LCB2B85,SI-----1-01,SI--LCB2B75","SI--UMC2Y83 FS","SI--UMC2Y83",40,40,40,40,9,9,9,9,12,,"HK1003 -Blackpoint D2 - Rev.0E DD30092021"
1-733,SI20HB-6-46,"REMAINING EXTERNAL INSULATION FOR STACK HRSG20 & COMPLETION PLATFORMS",5121,"HK1003-Rev.0E-3",TT_Task,"55902",-,-,-,0,TK_NotStart,30/08/2022,,26/09/2022,,"SI20HB-4F40 FS,SI20BZK7-130 FS,SI20HB-6-50 FS","SI20HB-4F40,SI20BZK7-130,SI20HB-6-50","SI20HB-8-25 FS,SI20HB-8-12 FS","SI20HB-8-25,SI20HB-8-12",108,,112,,25,,26,,79,1768,"HK1003 -Blackpoint D2 - Rev.0E DD30092021"
1-734,SI20PAH2-60,"(DF) INPUT FOR MS3 CONDENSER TUBE CLEANING SYSTEM 20PAH",5121,"HK1003-Rev.0E-3",TT_FinMile,"55902",-,-,-,100,TK_Complete,19/05/2021,19/05/2021,19/05/2021,19/05/2021,"SI20PAH3-25 FS","SI20PAH3-25","SI20UMC2B20 FF","SI20UMC2B20",41,41,41,41,9,9,9,9,13,,"HK1003 -Blackpoint D2 - Rev.0E DD30092021"
1-735,SI20LCL8B35,"FINAL COLD COMMISSIONING BOILER BLOWDOWN DRAIN PUMP 20LCL",5121,"HK1003-Rev.0E-3",TT_Task,"55902",-,-,-,0,TK_NotStart,25/04/2023,,01/05/2023,,"SI20LCL8B25 FS","SI20LCL8B25","SI20--P6-75 FS","SI20--P6-75",142,,143,,33,,33,,96,88,"HK1003 -Blackpoint D2 - Rev.0E DD30092021"
1-736,SI20LCL8B25,"COLD COMMISSIONING BOILER BLOWDOWN SYSTEM (FOR CHEM. CLEANING) 20LCL",5121,"HK1003-Rev.0E-3",TT_Task,"55902",-,-,-,0,TK_NotStart,18/04/2023,,24/04/2023,,"SI20CPC8-27 FS,SI20BF-8-25 SS,SI20LCL8B10 FS,SI-PM-40 FS","SI20CPC8-27,SI20BF-8-25,SI20LCL8B10,SI-PM-40","SI20LCL8B35 FS","SI20LCL8B35",141,,142,,33,,33,,95,88,"HK1003 -Blackpoint D2 - Rev.0E DD30092021"
1-737,SI20UHA2B-8,"DESIGN INPUT FOR EMBEDDED PARTS FOR 20UHA  AVAILABLE",5121,"HK1003-Rev.0E-3",TT_Mile,"55902",-,-,-,100,TK_Complete,04/05/2021,04/05/2021,04/05/2021,04/05/2021,"SI-----1-03 SS,SI20UHA2B-7 FS","SI-----1-03,SI20UHA2B-7","SI20UHA2B-9 FS","SI20UHA2B-9",39,39,39,39,9,9,9,9,11,,"HK1003 -Blackpoint D2 - Rev.0E DD30092021"
1-738,SI20UMC2B-20,"DESIGN INPUT FOR EMBEDDED PARTS TS FDN 20 UMC AVAILABLE",5121,"HK1003-Rev.0E-3",TT_Mile,"55902",-,-,-,100,TK_Complete,31/03/2021,31/03/2021,31/03/2021,31/03/2021,"SI-----1-03 SS","SI-----1-03","SI20UMC2B-15 FS,SI20UMC2B-25 FS","SI20UMC2B-15,SI20UMC2B-25",34,34,34,34,8,8,8,8,7,,"HK1003 -Blackpoint D2 - Rev.0E DD30092021"
1-739,SI--G--2-75,"DESIGN REVIEW INCL. SIL-STUDY G-SYSTEMS",5121,"HK1003-Rev.0E-3",TT_Task,"55902",-,-,-,100,TK_Complete,30/05/2021,30/05/2021,03/07/2021,03/07/2021,"SI--G--2-10 FS,SI--G--2B45 FS","SI--G--2-10,SI--G--2B45","SI--G--2I35 FS,SI--G--2-83 FF,SI--G--2-70# FF,SI--G--2-65 FS","SI--G--2I35,SI--G--2-83,SI--G--2-70#,SI--G--2-65",43,43,48,48,10,10,11,11,15,,"HK1003 -Blackpoint D2 - Rev.0E DD30092021"
1-740,SI--G--2B45,"DESIGN DATA SHEETS FOR ALL G- COMPONENTS AVAILABLE",5121,"HK1003-Rev.0E-3",TT_Mile,"55902",-,-,-,100,TK_Complete,30/05/2021,30/05/2021,30/05/2021,30/05/2021,"SI--G--2-10 FS,SI--G--2-35 FS","SI--G--2-10,SI--G--2-35","SI--G--2-75 FS","SI--G--2-75",43,43,43,43,10,10,10,10,15,,"HK1003 -Blackpoint D2 - Rev.0E DD30092021"
1-741,SI--G--2-35,"DESIGN DATA SHEETS G-COMPONENTS",5121,"HK1003-Rev.0E-3",TT_Task,"55902",-,-,-,100,TK_Complete,17/10/2020,17/10/2020,29/01/2021,29/01/2021,"SI--G--2-20 FS","SI--G--2-20","SI---1P2A530 FS,SI--PM-2-30 FS,SI--G--2B45 FS,SI--G--2-70# SS,SI--G--2I35 FS,SI--GM-2B86 FS,SI---1P2A520 FS,SI--G--2I45 FS","SI---1P2A530,SI--PM-2-30,SI--G--2B45,SI--G--2-70#,SI--G--2I35,SI--GM-2B86,SI---1P2A520,SI--G--2I45",11,11,25,25,2,2,6,6,0,,"HK1003 -Blackpoint D2 - Rev.0E DD30092021"
1-742,SI---1P2A10,"LAST SUPPLIER INPUT GROUP I (LAB, LBA, LBB, LBC, PAB) LOT4",5121,"HK1003-Rev.0E-3",TT_FinMile,"55902",-,-,-,100,TK_Complete,29/06/2021,29/06/2021,29/06/2021,29/06/2021,"SI----P3I31 FS,SI----P3I29 FS,SI--L--2-65 FS,SI--HA-2E65 SS,SI--M--2C20 SS,SI--HA-2A55 FS,SP--MB-2-07 FS,SI--HA-2E20 SS,SI--PAD2-92 FS,SI--LCB2B65 FS,SP20MA2B43 FS,SP20MA2B42 FS,SI--LBF2B65 FS","SI----P3I31,SI----P3I29,SI--L--2-65,SI--HA-2E65,SI--M--2C20,SI--HA-2A55,SP--MB-2-07,SI--HA-2E20,SI--PAD2-92,SI--LCB2B65,SP20MA2B43,SP20MA2B42,SI--LBF2B65","SI---1P2H528 FF,SI---1P2H529 FF,SI---1P2A517 FF,SI---1P2H530 FF","SI---1P2H528,SI---1P2H529,SI---1P2A517,SI---1P2H530",47,47,47,47,11,11,11,11,19,,"HK1003 -Blackpoint D2 - Rev.0E DD30092021"
1-743,SI20MAX7H15,"ELECTRICAL ERECTION PIPES / VALVES MAX",5121,"HK1003-Rev.0E-3",TT_Task,"55902",-,-,-,0,TK_NotStart,18/03/2023,,24/03/2023,,"SI20BZK7C33 FF,SI20MAX6H15 FS,SI20BZP7D18 FS,SI20BZP7D19 FS,SI20BZP7-5 FS,SI20BZP7-196 FS,SI20BZP7-174 FS,SI20UMY6M10 FS,SI20UMY6M11 FS,SI20UMY6M12 FS,SI--2227-68 FS,SI--BZP2-05 FS,SI--PEE7-20 FS,SI--BZP4B40 FS,SI20MAX6H17 FS","SI20BZK7C33,SI20MAX6H15,SI20BZP7D18,SI20BZP7D19,SI20BZP7-5,SI20BZP7-196,SI20BZP7-174,SI20UMY6M10,SI20UMY6M11,SI20UMY6M12,SI--2227-68,SI--BZP2-05,SI--PEE7-20,SI--BZP4B40,SI20MAX6H17","SI20MAX8-10 FS,SI20BZK7D11# FF,SI20BZK7D11# SS","SI20MAX8-10,SI20BZK7D11#,SI20BZK7D11#",137,,137,,31,,32,,93,168,"HK1003 -Blackpoint D2 - Rev.0E DD30092021"
1-744,SI20MBQ7H15,"ELECTRICAL ERECTION / VALVES IGN. GAS PIPES 20MBQ",5121,"HK1003-Rev.0E-3",TT_Task,"55902",-,-,-,0,TK_NotStart,25/03/2023,,31/03/2023,,"SI20MBQ6H45 FF,SI20BZK7A26 FF,SI20BZP7D18 FS,SI20BZP7D19 FS,SI20BZP7-5 FS,SI20BZP7-196 FS,SI20BZP7-174 FS,SI20UMY6M10 FS,SI20UMY6M11 FS,SI20UMY6M12 FS,SI--2227-68 FS,SI--BZP2-05 FS,SI--PEE7-20 FS,SI--BZP4B40 FS","SI20MBQ6H45,SI20BZK7A26,SI20BZP7D18,SI20BZP7D19,SI20BZP7-5,SI20BZP7-196,SI20BZP7-174,SI20UMY6M10,SI20UMY6M11,SI20UMY6M12,SI--2227-68,SI--BZP2-05,SI--PEE7-20,SI--BZP4B40","SI20MBA8A10 FS,SI20MBA8B10 FS,SI20MBX8-10 FS,SI20MBV8-10 FS,SI20MBA8D10 FS,SI20MBL8-10 FS,SI20MBP8-10 FS,SI20MBX8E10 FS,SI20MBH8-10 FS,SI20MBA8-10 FS,SI20BZK7D11# FF,SI20BZK7D11# SS","SI20MBA8A10,SI20MBA8B10,SI20MBX8-10,SI20MBV8-10,SI20MBA8D10,SI20MBL8-10,SI20MBP8-10,SI20MBX8E10,SI20MBH8-10,SI20MBA8-10,SI20BZK7D11#,SI20BZK7D11#",138,,138,,32,,32,,93,224,"HK1003 -Blackpoint D2 - Rev.0E DD30092021"
1-745,SI20MB-7J15,"ELECTRICAL ERECTION / VALVES 20MB",5121,"HK1003-Rev.0E-3",TT_Task,"55902",-,-,-,0,TK_NotStart,11/02/2023,,24/02/2023,,"SI20BZK7A26 FF,SI20MBA6A15 FS,SI20BZP7D18 FS,SI20BZP7D19 FS,SI20BZP7-5 FS,SI20BZP7-196 FS,SI20BZP7-174 FS,SI20UMY6M10 FS,SI20UMY6M11 FS,SI20UMY6M12 FS,SI--2227-68 FS,SI--BZP2-05 FS,SI--PEE7-20 FS,SI--BZP4B40 FS,SI20MBA6A16 FS","SI20BZK7A26,SI20MBA6A15,SI20BZP7D18,SI20BZP7D19,SI20BZP7-5,SI20BZP7-196,SI20BZP7-174,SI20UMY6M10,SI20UMY6M11,SI20UMY6M12,SI--2227-68,SI--BZP2-05,SI--PEE7-20,SI--BZP4B40,SI20MBA6A16","SI20MBA8A10 FS,SI20MBA8B10 FS,SI20MBX8-10 FS,SI20MBV8-10 FS,SI20MBA8D10 FS,SI20MBL8-10 FS,SI20MBP8-10 FS,SI20MBX8E10 FS,SI20MBH8-10 FS,SI20MBA8-10 FS,SI20BZK7D11# FF,SI20BZK7D11# SS","SI20MBA8A10,SI20MBA8B10,SI20MBX8-10,SI20MBV8-10,SI20MBA8D10,SI20MBL8-10,SI20MBP8-10,SI20MBX8E10,SI20MBH8-10,SI20MBA8-10,SI20BZK7D11#,SI20BZK7D11#",132,,133,,30,,31,,90,504,"HK1003 -Blackpoint D2 - Rev.0E DD30092021"
1-746,SI20SCA8-17,"COLD COMMISSIONING FOR COMPRESSED AIR/INSTRUMENT AIR SYSTEM SCA/QFA",5121,"HK1003-Rev.0E-3",TT_Task,"55902",-,-,-,0,TK_NotStart,31/05/2023,,20/06/2023,,"SI20SCA8-16 FS,SI-PM-40 FS,SI20BBA8-37 SS,SI20B--8-50 FS","SI20SCA8-16,SI-PM-40,SI20BBA8-37,SI20B--8-50","SI20MB-9-15 FS,SI20MAN8-25 FS,SI20MBX8-25 SS,SI20MBA8E25 SS,SI20MB-8-25 SS,SI20MKW8H25 SS,SI20CYQ8-25 SS,SI20MB-9-05 FS","SI20MB-9-15,SI20MAN8-25,SI20MBX8-25,SI20MBA8E25,SI20MB-8-25,SI20MKW8H25,SI20CYQ8-25,SI20MB-9-05",147,,150,,34,,35,,97,24,"HK1003 -Blackpoint D2 - Rev.0E DD30092021"
1-747,SI20SCA8-16,"(TOP-20SCB) COMPRESSED AIR SUPPLY SYSTEM",5121,"HK1003-Rev.0E-3",TT_FinMile,"55902",-,-,-,0,TK_NotStart,30/05/2023,,30/05/2023,,"SI20SCA7-15 FS,SI20SCB7A15 FS","SI20SCA7-15,SI20SCB7A15","SI20SCA8-17 FS,SI20TPM9B8-30 FS","SI20SCA8-17,SI20TPM9B8-30",147,,147,,34,,34,,97,24,"HK1003 -Blackpoint D2 - Rev.0E DD30092021"
1-748,SI20LDK6B40,"(RFP) READY FOR PIPE CONNECTION CONDENSATE POLISHING PUMP 20LDK",5121,"HK1003-Rev.0E-3",TT_FinMile,"55902",-,-,-,0,TK_NotStart,04/05/2022,,04/05/2022,,"SI20LDK6M15 FS","SI20LDK6M15","SI20LDK6A15 FS","SI20LDK6A15",91,,91,,21,,21,,61,1032,"HK1003 -Blackpoint D2 - Rev.0E DD30092021"
1-749,SI20LDK8B10,"(TOP-20LDK) CONDENSATE POLISHING SYSTEM",5121,"HK1003-Rev.0E-3",TT_FinMile,"55902",-,-,-,0,TK_NotStart,01/03/2023,,01/03/2023,,"SI20LD8B110 FS,SI20LDK6B17 FS","SI20LD8B110,SI20LDK6B17","SI20LDK8B25 FS,SI20TPM19A8-30 FS,SI20TPM28A8-30 FS,SI20TPM29A8-30 FS","SI20LDK8B25,SI20TPM19A8-30,SI20TPM28A8-30,SI20TPM29A8-30",134,,134,,31,,31,,92,184,"HK1003 -Blackpoint D2 - Rev.0E DD30092021"
1-750,SI20UBA3J55,"INSTALL. COMP., INT. CABLING, FIRE PROT., SHOP TEST ELECTRICAL MODULES 20UBA7610/20",5121,"HK1003-Rev.0E-3",TT_Task,"55902",-,-,-,0,TK_NotStart,24/01/2022,,10/04/2022,,"SI20UBA2J81 FS,SI20UBA3J25 FS,SI20UBA4J50 FS,SP--B--2-13 FS","SI20UBA2J81,SI20UBA3J25,SI20UBA4J50,SP--B--2-13","SI20UBA3B70 FS","SI20UBA3B70",77,,88,,18,,20,,46,768,"HK1003 -Blackpoint D2 - Rev.0E DD30092021"
1-751,SI--PAD2-75,"BASIC DESIGN / PREP. RFQ COOLING TOWER EQUIPMENT PAD (GFK)",5121,"HK1003-Rev.0E-3",TT_Task,"55902",-,-,-,100,TK_Complete,01/11/2020,01/11/2020,19/12/2020,19/12/2020,"SI-----1-03 SS,SI--G--2-20 FS","SI-----1-03,SI--G--2-20","SI--PAD2-20 FS,SI--PAD2-86 FS,SI--PAD2-60 SS,SI-P222-155 FS","SI--PAD2-20,SI--PAD2-86,SI--PAD2-60,SI-P222-155",13,13,20,20,3,3,4,4,0,,"HK1003 -Blackpoint D2 - Rev.0E DD30092021"
1-752,SI--UMC2Y70,"DETAIL DESIGN CONCRETE STRUCTURE CEP/LDK PIT 20UMC",5121,"HK1003-Rev.0E-3",TT_Task,"55902",-,-,-,100,TK_Complete,29/01/2021,29/01/2021,15/03/2021,15/03/2021,"SI--UMC2Y79 FS,SI--UMC2Y60 FF,SI-----1-05 FS","SI--UMC2Y79,SI--UMC2Y60,SI-----1-05","SI--UMC2Y81 FF,SI--UMC2Y75 FS,SI--UMC2A79 FF,SI-P222-147 FS","SI--UMC2Y81,SI--UMC2Y75,SI--UMC2A79,SI-P222-147",25,25,32,32,6,6,7,7,3,,"HK1003 -Blackpoint D2 - Rev.0E DD30092021"
1-753,SI--ZTA2-85,"CONTRACT INTO FORCE CHEMICAL CLEANING",5121,"HK1003-Rev.0E-3",TT_Mile,"55902",-,-,-,0,TK_NotStart,13/08/2022,,13/08/2022,,"SI--ZTA2-80 FS,SI-----1-05 FS","SI--ZTA2-80,SI-----1-05","SI--ZTA3-25 FS","SI--ZTA3-25",106,,106,,24,,24,,77,224,"HK1003 -Blackpoint D2 - Rev.0E DD30092021"
1-754,SI---3P2A10,"LAST SUPPLIER INPUT GROUP III (MAJ,MAN,MAV,LCW,MAX,LCE,GHC,HSJ) LOT4",5121,"HK1003-Rev.0E-3",TT_FinMile,"55902",-,-,-,100,TK_Complete,18/06/2021,18/06/2021,18/06/2021,18/06/2021,"SP--MB-2-07 FS,SI--M--2C20 SS,SI--P--2-65 SS,SI20PCB2B66 FS,SI--PGB2D65 FS,SI--PGB2B65 FS,SI20MBA2D65 FS,SI--PDB2B65 FS,SI--PAC2B65 FS,SI20PAH2-65 FS,SI--PGB2D65 FF,SP20MA2B43 FS,SP20MA2B42 FS,SI--PGB2C65 FS","SP--MB-2-07,SI--M--2C20,SI--P--2-65,SI20PCB2B66,SI--PGB2D65,SI--PGB2B65,SI20MBA2D65,SI--PDB2B65,SI--PAC2B65,SI20PAH2-65,SI--PGB2D65,SP20MA2B43,SP20MA2B42,SI--PGB2C65","SI-P2I-1 FS,SI-P222-171 FS,SI---1P2H528 FF,SI---1P2H529 FF,SI---1P2A517 FF,SI---1P2H530 FF","SI-P2I-1,SI-P222-171,SI---1P2H528,SI---1P2H529,SI---1P2A517,SI---1P2H530",45,45,45,45,10,10,10,10,18,,"HK1003 -Blackpoint D2 - Rev.0E DD30092021"
1-755,SI20BAT2-15,"BASIC DESIGN / SPECIFICATION MAIN TRANSFORMERS BAT/BBT",5121,"HK1003-Rev.0E-3",TT_Task,"55902",-,-,-,100,TK_Complete,15/01/2021,15/01/2021,25/02/2021,25/02/2021,"SI--B--2-50 FS,SI--3331-32 FS,SI-----1-03 FS,SI-----1-01 SS,SI-----1-05 FS","SI--B--2-50,SI--3331-32,SI-----1-03,SI-----1-01,SI-----1-05","SI--UBF2-78 FS,SI20BAT2-75 FS,SI20BAT2-60 FS,SI--UBF2-70 FS,SI20BAT2-87 FS","SI--UBF2-78,SI20BAT2-75,SI20BAT2-60,SI--UBF2-70,SI20BAT2-87",23,23,29,29,5,5,6,6,2,,"HK1003 -Blackpoint D2 - Rev.0E DD30092021"
1-756,SI20MA-6B45,"PROVISIONALLY MOUNT OF EXPANSION JOINT FOR LP1-SUPPORTING ARM AND CENTERING GUIDE MA",5121,"HK1003-Rev.0E-3",TT_Task,"55902",-,-,-,0,TK_NotStart,12/09/2022,,18/09/2022,,"SI20MA-6B06 FS","SI20MA-6B06","SI20MA-6B14 FS","SI20MA-6B14",110,,111,,25,,25,,81,8,"HK1003 -Blackpoint D2 - Rev.0E DD30092021"
1-757,SI20MA-6B06,"WELDING ENTIRE LP1-OUTER CASING MA",5121,"HK1003-Rev.0E-3",TT_Task,"55902",-,-,-,0,TK_NotStart,26/08/2022,,11/09/2022,,"SI20MA-6B04 FS,SI20MA-6B02 FS","SI20MA-6B04,SI20MA-6B02","SI20MA-6B14 FS,SI20MAG6-52 FS,SI20MAG6-50 SS,SI20MA-6B45 FS","SI20MA-6B14,SI20MAG6-52,SI20MAG6-50,SI20MA-6B45",107,,110,,25,,25,,79,8,"HK1003 -Blackpoint D2 - Rev.0E DD30092021"
1-758,SI20MA-6D50,"STEAM TURBINE READY FOR PREPARATION LUBE OIL FLUSHING MA",5121,"HK1003-Rev.0E-3",TT_Mile,"55902",-,-,-,0,TK_NotStart,18/02/2023,,18/02/2023,,"SI20MA-6D20 FS","SI20MA-6D20","SI20MAV6-55 FS,SP20MBX4C25 FS","SI20MAV6-55,SP20MBX4C25",133,,133,,31,,31,,91,8,"HK1003 -Blackpoint D2 - Rev.0E DD30092021"
1-759,SI--B--2A50,"(ELV2) PREL. EL. LOAD DATA FOR LV",5121,"HK1003-Rev.0E-3",TT_Mile,"55902",-,-,-,100,TK_Complete,16/03/2021,16/03/2021,16/03/2021,16/03/2021,"SI--BAW2-03 FS,SI-----1-03 SS","SI--BAW2-03,SI-----1-03","SI--PM-2-30 FS,SI--BFT2-15 FS,SI--BAW2-04 FS,SP--B--2-16 SS,SI20XKA2-15 FS,SI--BFF2-75 FS,SI20BFA2-75 FS","SI--PM-2-30,SI--BFT2-15,SI--BAW2-04,SP--B--2-16,SI20XKA2-15,SI--BFF2-75,SI20BFA2-75",32,32,32,32,7,7,7,7,6,,"HK1003 -Blackpoint D2 - Rev.0E DD30092021"
1-760,SI20QU-6-15,"ERECTION SAMPLING CONTAINER 20QU",5121,"HK1003-Rev.0E-3",TT_Task,"55902",-,-,-,0,TK_NotStart,18/11/2022,,01/12/2022,,"SI20UHX5-45 FS,SI20QU-4-40 FS,SI20UBA7C-31 SS,SI20QU-2-06 FS","SI20UHX5-45,SI20QU-4-40,SI20UBA7C-31,SI20QU-2-06","SI20QU-7-15 FS,SI20QU-6-40 SS,SI20SGY7A26 FS","SI20QU-7-15,SI20QU-6-40,SI20SGY7A26",119,,121,,27,,28,,85,912,"HK1003 -Blackpoint D2 - Rev.0E DD30092021"
1-761,SI20QU-6-40,"(RFP) READY FOR PIPE CONNECTION SAMPLING CONTAINER 20QU",5121,"HK1003-Rev.0E-3",TT_FinMile,"55902",-,-,-,0,TK_NotStart,21/11/2022,,21/11/2022,,"SI20QU-2-06 FS,SI20QU-6-15 SS","SI20QU-2-06,SI20QU-6-15","SI20QU-6H15 FS,SI20PGB6H17 FS","SI20QU-6H15,SI20PGB6H17",120,,120,,28,,28,,85,912,"HK1003 -Blackpoint D2 - Rev.0E DD30092021"
1-762,SI20GM-8B10,"(TOP-20GM-03) PLANT DRAINAGE SYSTEM FOR UBE/UBF AREA",5121,"HK1003-Rev.0E-3",TT_FinMile,"55902",-,-,-,0,TK_NotStart,13/02/2023,,13/02/2023,,"SI20GM-7E15 FS,SI20GM-6B15 FS,SI--9998-22& FS","SI20GM-7E15,SI20GM-6B15,SI--9998-22&","SI20GM-8B25 FS,SI20TPM24A8-30 FS","SI20GM-8B25,SI20TPM24A8-30",132,,132,,30,,30,,90,296,"HK1003 -Blackpoint D2 - Rev.0E DD30092021"
1-763,SI20UMY5-05,"WORK PREPARATION, EXCAVATION PIPE BRIDGE 20ULY/UMY",5121,"HK1003-Rev.0E-3",TT_Task,"55902",-,-,-,0,TK_NotStart,01/12/2021,,14/12/2021,,"SI20UHA5-15 SS,SI--UMY2-75 FS,SI-----5-22 FS,SI-----5-21& FS,SI-----5-20 FS,SI20UHA5-45 FF,SI--UMY2-79 FS","SI20UHA5-15,SI--UMY2-75,SI-----5-22,SI-----5-21&,SI-----5-20,SI20UHA5-45,SI--UMY2-79","SI20UMY5-10 FS,SI-P222-131# FF,SI-P222-131# SS","SI20UMY5-10,SI-P222-131#,SI-P222-131#",69,,71,,16,,16,,40,160,"HK1003 -Blackpoint D2 - Rev.0E DD30092021"
1-764,SI20BZL7A15,"LIGHTING AND SMALL POWER INSTALLATION 20UBA76xx/77xx/7410/73xx/7210/7110/7920/10",5121,"HK1003-Rev.0E-3",TT_Task,"55902",-,-,-,0,TK_NotStart,24/08/2022,,13/09/2022,,"SI--BZL2-05 FS,SI--BZL4-40 FS,SI20BZP7-80 SS,SI20UBA5B45 FS,SI--BZL4-40 FF,SI20UBA7-15 FS","SI--BZL2-05,SI--BZL4-40,SI20BZP7-80,SI20UBA5B45,SI--BZL4-40,SI20UBA7-15","SI20BZL7-16# FF,SI20BZL7-16# SS,SI20BZK7F29 FS,SI20BZL8B12 FS","SI20BZL7-16#,SI20BZL7-16#,SI20BZK7F29,SI20BZL8B12",107,,110,,25,,25,,78,2208,"HK1003 -Blackpoint D2 - Rev.0E DD30092021"
1-765,SI20MB-9-15&,"1ST. IGNITION GT20",5121,"HK1003-Rev.0E-3",TT_Mile,"55902",-,-,-,0,TK_NotStart,01/07/2023,,01/07/2023,,"SI-P222-172 FS","SI-P222-172","SI20MB-9-15 SS","SI20MB-9-15",152,,152,,35,,35,,99,0,"HK1003 -Blackpoint D2 - Rev.0E DD30092021"
1-766,SI--HB-2A65,"(DF) INPUT FOR M2 MAIN COLUMNS HRSG/STACK",5121,"HK1003-Rev.0E-3",TT_FinMile,"55902",-,-,-,100,TK_Complete,15/01/2021,15/01/2021,15/01/2021,15/01/2021,"SI--HB-2A40 FS,SI--HB-2A05 FS","SI--HB-2A40,SI--HB-2A05","SI--HB-2B60 FS","SI--HB-2B60",23,23,23,23,5,5,5,5,2,,"HK1003 -Blackpoint D2 - Rev.0E DD30092021"
1-767,SI--2222-38,"STEAM BLOWING INSTRUCTION",5121,"HK1003-Rev.0E-3",TT_Mile,"55902",-,-,-,0,TK_NotStart,15/04/2023,,15/04/2023,,"SI-----1-03 SS","SI-----1-03","SI20--P6-75 SS","SI20--P6-75",141,,141,,32,,32,,95,0,"HK1003 -Blackpoint D2 - Rev.0E DD30092021"
1-768,SI--2222-35,"COMMISSIONING MANUAL - ELECTRICAL AND I&C-PART",5121,"HK1003-Rev.0E-3",TT_Mile,"55902",-,-,-,0,TK_NotStart,17/01/2023,,17/01/2023,,"SI-----1-03 SS,SI20BZK7-28 FS,SI20BZK7A27 FS,SI20BZK7A28 FS,SI20BZK7B27 FS,SI20BZK7C33 FS,SI20BZK7E25 FS,SI20UBA7-104 FS,SI20UBA7-25 FS,SI--PEI7-20 FS,SI20UEY5-45 FS,SI--B--2-68 FS,SI20BZK4-41 FS,SI20BZK7-25 FS,SI20UBA7-17 SS,SI20UCA7-15 FS,SI--B--7-55 FS,SI20BZP7-110 FS,SI20UBA4-42 FS,SI--B--2-93 FS","SI-----1-03,SI20BZK7-28,SI20BZK7A27,SI20BZK7A28,SI20BZK7B27,SI20BZK7C33,SI20BZK7E25,SI20UBA7-104,SI20UBA7-25,SI--PEI7-20,SI20UEY5-45,SI--B--2-68,SI20BZK4-41,SI20BZK7-25,SI20UBA7-17,SI20UCA7-15,SI--B--7-55,SI20BZP7-110,SI20UBA4-42,SI--B--2-93","SI20UBA8G25 FS,SI20UBA8G27 FS,SI20UBA8G26 FS,SI20UBA7C-25 FS","SI20UBA8G25,SI20UBA8G27,SI20UBA8G26,SI20UBA7C-25",128,,128,,29,,29,,88,232,"HK1003 -Blackpoint D2 - Rev.0E DD30092021"
1-769,SI20MA-6-50,"STEAM TURBINE READY FOR Cable Trays / E and I&C / Fire Fighting",5121,"HK1003-Rev.0E-3",TT_Mile,"55902",-,-,-,0,TK_NotStart,02/10/2022,,02/10/2022,,"SI20MA-5-26 FS,SI20MA-5-25 FS,SI20MA-6B36 FS","SI20MA-5-26,SI20MA-5-25,SI20MA-6B36","SI20MAD7-15 FS,SI20BZP7-110 FS,SI20SGA8-26 FS,SI20MA-6D20 FS,SI20BZP7-110 SS,SI20BZP7-185 FS,SI20C--7L16 FS,SI20C--7L16 SS,SI20BZK7E26 FS","SI20MAD7-15,SI20BZP7-110,SI20SGA8-26,SI20MA-6D20,SI20BZP7-110,SI20BZP7-185,SI20C--7L16,SI20C--7L16,SI20BZK7E26",113,,113,,26,,26,,82,296,"HK1003 -Blackpoint D2 - Rev.0E DD30092021"
1-770,SI20QFB7H15,"ELECTRICAL ERECTION / VALVES ST CONTROL AIR 20QFB",5121,"HK1003-Rev.0E-3",TT_Task,"55902",-,-,-,0,TK_NotStart,30/11/2022,,06/12/2022,,"SI20QFB6H15 FS,SI20BZP7D18 FS,SI20BZP7D19 FS,SI20BZP7-5 FS,SI20BZP7-196 FS,SI20BZP7-174 FS,SI20UMY6M10 FS,SI20UMY6M11 FS,SI20UMY6M12 FS,SI--2227-68 FS,SI--BZP2-05 FS,SI--PEE7-20 FS,SI--BZP4B40 FS,SI20BZP7-181 FS","SI20QFB6H15,SI20BZP7D18,SI20BZP7D19,SI20BZP7-5,SI20BZP7-196,SI20BZP7-174,SI20UMY6M10,SI20UMY6M11,SI20UMY6M12,SI--2227-68,SI--BZP2-05,SI--PEE7-20,SI--BZP4B40,SI20BZP7-181","SI20QFB8-10 FS,SI20BZK7D11# FF,SI20BZK7D11# SS","SI20QFB8-10,SI20BZK7D11#,SI20BZK7D11#",121,,122,,28,,28,,86,1480,"HK1003 -Blackpoint D2 - Rev.0E DD30092021"
1-771,SI--UR-2-44,"BASIC DESIGN PLANT LAYOUT COOLING TOWER",5121,"HK1003-Rev.0E-3",TT_Task,"55902",-,-,-,100,TK_Complete,20/12/2020,20/12/2020,16/04/2021,16/04/2021,"SI--UR-2-40 FS","SI--UR-2-40","SI--UR-2-35 FS","SI--UR-2-35",20,20,36,36,4,4,8,8,1,,"HK1003 -Blackpoint D2 - Rev.0E DD30092021"
1-772,SP20MAG3-81,"(RFS) READY FOR SHIPMENT ST CONDENSER 20MAG",5121,"HK1003-Rev.0E-3",TT_FinMile,"55902",-,-,-,0,TK_NotStart,22/03/2022,,22/03/2022,,"SP20MAG4-11 FS","SP20MAG4-11","SI20MAG4-25 FS","SI20MAG4-25",85,,85,,19,,19,,53,144,"HK1003 -Blackpoint D2 - Rev.0E DD30092021"
1-773,SP20MKC3-25,"MANUFACTURING SEE/SFC TRANSFORMER 20MKC / 20MBJ",5121,"HK1003-Rev.0E-3",TT_Task,"55902",-,-,-,26,TK_Active,29/07/2021,29/07/2021,01/04/2022,,"SP--MKC2-85 FS","SP--MKC2-85","SP20MKC3-70 FS,SP20MKC3-80 FS,SI20BFT4-27 FS","SP20MKC3-70,SP20MKC3-80,SI20BFT4-27",51,51,86,,12,12,20,,23,640,"HK1003 -Blackpoint D2 - Rev.0E DD30092021"
1-774,SI--URD2-75,"(F) CONCRETE STRUCTURE DWGS ON SITE RELEASED FOR EXECUTION 20URD xx",5121,"HK1003-Rev.0E-3",TT_FinMile,"55902",-,-,-,0,TK_NotStart,30/09/2021,,30/09/2021,,"SI--URD2-93 FS","SI--URD2-93","SI20URD5-10 SS","SI20URD5-10",60,,60,,14,,14,,30,1352,"HK1003 -Blackpoint D2 - Rev.0E DD30092021"
1-775,SI--URD2-55,"FOUNDATION GROUNDING DWGS RELEASED FOR EXEC. 20URD xx",5121,"HK1003-Rev.0E-3",TT_Task,"55902",-,-,-,100,TK_Complete,30/06/2021,30/06/2021,13/07/2021,13/07/2021,"SI--URD2-70 FF","SI--URD2-70","","",47,47,49,49,11,11,11,11,19,,"HK1003 -Blackpoint D2 - Rev.0E DD30092021"
1-776,SI20PGB8B25,"COLD COMMISSIONING CLOSED COOLING WATER SYSTEM FOR COMBINED CYCLE OPERATION PGB",5121,"HK1003-Rev.0E-3",TT_Task,"55902",-,-,-,0,TK_NotStart,18/04/2023,,08/05/2023,,"SI20BFG8-50 FS,SI20PGB8-10 FS,SI20QCB8-25 FS,SI20CPC8-27 FS,SI20B--8-50 FS,SI20CPA8-25 SS,SI-PM-40 FS,SI20B--8-50 SS","SI20BFG8-50,SI20PGB8-10,SI20QCB8-25,SI20CPC8-27,SI20B--8-50,SI20CPA8-25,SI-PM-40,SI20B--8-50","SI20PCB8M26 FS,SI20MAV8-25 FS,SI20LCA8M25 SS,SI20MB-9-05 FS,SI20MBV8H25 FS,SI20MKA8-25 SS,SI20--P6-78 SS,SI20MB-8E25 FS,SI20MBA8-25 SS,SI20MBX8E25 FS,SI20MBX8-25 FS,SI20MBA8E25 FS,SI20MKW8H25 FS,SI20MAN8-25 FS,SI20MB-8-25 FS","SI20PCB8M26,SI20MAV8-25,SI20LCA8M25,SI20MB-9-05,SI20MBV8H25,SI20MKA8-25,SI20--P6-78,SI20MB-8E25,SI20MBA8-25,SI20MBX8E25,SI20MBX8-25,SI20MBA8E25,SI20MKW8H25,SI20MAN8-25,SI20MB-8-25",141,,144,,33,,33,,95,16,"HK1003 -Blackpoint D2 - Rev.0E DD30092021"
1-777,SI20UBA5B47,"(RFE) STEEL STRUCTURE FOR ELECTRICAL MODULES 20UBA7xxx",5121,"HK1003-Rev.0E-3",TT_FinMile,"55902",-,-,-,0,TK_NotStart,27/07/2022,,27/07/2022,,"SI20UBA5B59 FS","SI20UBA5B59","SI20UBA5-92 FS,SI20UBA7-104 FS,SI20UBA7-36 FS,SI20UBA7-33 FS,SI20UBA7-30 FS","SI20UBA5-92,SI20UBA7-104,SI20UBA7-36,SI20UBA7-33,SI20UBA7-30",103,,103,,24,,24,,75,592,"HK1003 -Blackpoint D2 - Rev.0E DD30092021"
1-778,SI20UBA5B59,"ERECTION STEEL PLATFORMS FOR ELECTRICAL MODULES 20UBA7xxx",5121,"HK1003-Rev.0E-3",TT_Task,"55902",-,-,-,0,TK_NotStart,27/07/2022,,27/07/2022,,"SI20UBA5B61 FS","SI20UBA5B61","SI20UBA5B47 FS","SI20UBA5B47",103,,103,,24,,24,,75,592,"HK1003 -Blackpoint D2 - Rev.0E DD30092021"
1-779,SI20UBA5-47,"(RFE) FOUNDATION 20UBA7xxx",5121,"HK1003-Rev.0E-3",TT_FinMile,"55902",-,-,-,0,TK_NotStart,20/09/2022,,20/09/2022,,"SI20UBA5-17 FS,SI20UBA5-92 FS,SI20UBA5-17.09 FS","SI20UBA5-17,SI20UBA5-92,SI20UBA5-17.09","SI20B--8-52 FS","SI20B--8-52",111,,111,,26,,26,,81,1576,"HK1003 -Blackpoint D2 - Rev.0E DD30092021"
1-780,SI--BAW2-13,"SPECIFICATION GROUNDING & LIGHTNING PROTECTION",5121,"HK1003-Rev.0E-3",TT_Task,"55902",-,-,-,100,TK_Complete,18/05/2021,18/05/2021,28/06/2021,28/06/2021,"SI--B--2-03 FS,SI--BAW2-14 SS","SI--B--2-03,SI--BAW2-14","SI--PM-2-60 FS,SI20BAW2-30 FS,SI--BAW2-74 FS,SI--BAW2-02 FS,SI--BAW2-87 FS","SI--PM-2-60,SI20BAW2-30,SI--BAW2-74,SI--BAW2-02,SI--BAW2-87",41,41,47,47,9,9,11,11,13,,"HK1003 -Blackpoint D2 - Rev.0E DD30092021"
1-781,SI--BAW2-02,"KICK OFF LIGHTNING PROTECTION",5121,"HK1003-Rev.0E-3",TT_Mile,"55902",-,-,-,100,TK_Complete,23/04/2021,23/04/2021,23/04/2021,23/04/2021,"SI--BAW2-14 FS,SI-----1-01 SS,SI--BAW2-13 FS","SI--BAW2-14,SI-----1-01,SI--BAW2-13","SI--UBF2-50 FS,SI--UHA2-50 FS,SI20UVM2-50 FS,SI--UBX2-50 FS,SI20UBN2-20 FS,SI--UBA2-50 FS,SI20UEY2-50 FS,SI--UMX2-50 FS,SI20UBA2-50 FS,SI--ULA2-50 FS","SI--UBF2-50,SI--UHA2-50,SI20UVM2-50,SI--UBX2-50,SI20UBN2-20,SI--UBA2-50,SI20UEY2-50,SI--UMX2-50,SI20UBA2-50,SI--ULA2-50",37,37,37,37,8,8,8,8,9,,"HK1003 -Blackpoint D2 - Rev.0E DD30092021"
1-782,SI--2222-31,"PROJECT SPECIFIC QUALITY PLAN",5121,"HK1003-Rev.0E-3",TT_FinMile,"55902",-,-,-,100,TK_Complete,13/07/2021,13/07/2021,13/07/2021,13/07/2021,"SI-----1-03 FS,SI-----1-05 FS","SI-----1-03,SI-----1-05","SI-----1-09 FS","SI-----1-09",49,49,49,49,11,11,11,11,21,,"HK1003 -Blackpoint D2 - Rev.0E DD30092021"
1-783,SI--2222-30,"PROJECT QUALITY MANUAL",5121,"HK1003-Rev.0E-3",TT_FinMile,"55902",-,-,-,100,TK_Complete,07/07/2021,07/07/2021,07/07/2021,07/07/2021,"SI-----1-03 FS,SI-----1-05 FS","SI-----1-03,SI-----1-05","SI-----1-09 FS,SI20BAW3-25 FS,SI20SCA3-26 FS,SI--BZP3-25 FS,SI--BZP3-26 FS,SI20BZK3-81 FS,SI20BZK3-84 FS,SI--BAW3-25 FS,SI-P2I-6 FS,SI20BFF3-25 FS,SI20BFC3-25 FS,SI20BFA3-25 FS,SI--BZK3-25 FS,SI20BZK3-25 FS,SI--CYA3-25 FS,SI20-1P342 FS,SI20UEY3-50 FS,SI--BZL3-25 FS,SI20CJ-3-52 FS,SI20QC-3-26 FS,SP20MPB3A94 FS,SI20LCA3M38# FS,SI20LAC3M55# FS,SI20PCB3M55# FS,SI20PGB3M31# FS,SI20PGB3M40# FS,SI20ULY3M55# FS,SI20UPY3M31# FS,SP20MKA3B25 FS,SI20CJ-3-53 FS,SI20CJ-3-25 FS,SI20UEY3-55 FS,SI20---3M90 FS,SI20---3M88 FS,SI20UBA3L25 FS,SI20UBA3G25 FS,SI20UBA3H25 FS,SI20UBA3G81 FS,SI20UBA3J25 FS,SI20UBA3G84 FS,SP20UBA3H25 FS,SI20UBA3K25 FS,SI20UBA3C5 FS,SI20QU-3-26 FS,SP20CJT3-81 FS,SI20SAM3E31 FS,SI20ULY3-85 FS,SI20UBA3H56 FS","SI-----1-09,SI20BAW3-25,SI20SCA3-26,SI--BZP3-25,SI--BZP3-26,SI20BZK3-81,SI20BZK3-84,SI--BAW3-25,SI-P2I-6,SI20BFF3-25,SI20BFC3-25,SI20BFA3-25,SI--BZK3-25,SI20BZK3-25,SI--CYA3-25,SI20-1P342,SI20UEY3-50,SI--BZL3-25,SI20CJ-3-52,SI20QC-3-26,SP20MPB3A94,SI20LCA3M38#,SI20LAC3M55#,SI20PCB3M55#,SI20PGB3M31#,SI20PGB3M40#,SI20ULY3M55#,SI20UPY3M31#,SP20MKA3B25,SI20CJ-3-53,SI20CJ-3-25,SI20UEY3-55,SI20---3M90,SI20---3M88,SI20UBA3L25,SI20UBA3G25,SI20UBA3H25,SI20UBA3G81,SI20UBA3J25,SI20UBA3G84,SP20UBA3H25,SI20UBA3K25,SI20UBA3C5,SI20QU-3-26,SP20CJT3-81,SI20SAM3E31,SI20ULY3-85,SI20UBA3H56",48,48,48,48,11,11,11,11,21,,"HK1003 -Blackpoint D2 - Rev.0E DD30092021"
1-784,SI20UBA4-52,"(ET4b) ELECTRICAL MODULES AT WORKSHOP READY FOR COMPONENT INSTALLATION 20UBA7110/20/30",5121,"HK1003-Rev.0E-3",TT_Mile,"55902",-,-,-,0,TK_NotStart,19/01/2022,,19/01/2022,,"SI20UBA3G25 FS,SI20BFA4-10 FS","SI20UBA3G25,SI20BFA4-10","SI20UBA3E57 FS","SI20UBA3E57",76,,76,,17,,17,,46,688,"HK1003 -Blackpoint D2 - Rev.0E DD30092021"
1-785,SI20HB-4A26,"TRANSPORT MAIN STEEL STRUCTURE HRSG20 (MAIN FRAME / CASING)",5121,"HK1003-Rev.0E-3",TT_Task,"55902",-,-,-,0,TK_NotStart,08/12/2021,,06/01/2022,,"SI--LOG4-30 FS,SI20HB-3A81 FS,SI20HB-3A82 FS","SI--LOG4-30,SI20HB-3A81,SI20HB-3A82","SI20HB-4A41 FS","SI20HB-4A41",70,,74,,16,,17,,41,136,"HK1003 -Blackpoint D2 - Rev.0E DD30092021"
1-786,SI20HB-3A25,"MANUFACTURING MAIN STEEL STRUCTURE HRSG20",5121,"HK1003-Rev.0E-3",TT_Task,"55902",-,-,-,82,TK_Active,14/04/2021,14/04/2021,04/11/2021,,"SI--HB-3-25 FS,SI--HB-2-15 SS,SI--HB-2-17 FF,SI--HA-2-99 FS","SI--HB-3-25,SI--HB-2-15,SI--HB-2-17,SI--HA-2-99","SI20HB-3E26 SS,SI20HB-3B70 FS,SI20HB-3A83 FF","SI20HB-3E26,SI20HB-3B70,SI20HB-3A83",36,36,65,,8,8,15,,8,136,"HK1003 -Blackpoint D2 - Rev.0E DD30092021"
1-787,SI20HB-8-25,"COLD COMMISSIONING BOILER INLET, OUTLET DUCT, STACK HBK/HNE 20",5121,"HK1003-Rev.0E-3",TT_Task,"55902",-,-,-,0,TK_NotStart,18/04/2023,,24/04/2023,,"SI20HB-6-40 FS,SI20--P6-73 SS,SI20HB-6-46 FS,SI20CPC8-25 FS,SI20HB-6-42 FS,SI20HB-8-12 FS,SI20HB-8-18 FS,SI20HB-6-43 FS,SI-PM-40 FS,SI20HB-6-49 FS","SI20HB-6-40,SI20--P6-73,SI20HB-6-46,SI20CPC8-25,SI20HB-6-42,SI20HB-8-12,SI20HB-8-18,SI20HB-6-43,SI-PM-40,SI20HB-6-49","SI20--P6-75 FS","SI20--P6-75",141,,142,,33,,33,,95,144,"HK1003 -Blackpoint D2 - Rev.0E DD30092021"
1-788,SP20MBR3A25,"DETAIL DESIGN / MANUFACTURING DIFFUSER 20MBR",5121,"HK1003-Rev.0E-3",TT_Task,"55902",-,-,-,30,TK_Active,29/07/2021,29/07/2021,22/02/2022,,"SP20MBR2A85 SS,SI20MBR2B64 SS","SP20MBR2A85,SI20MBR2B64","SP20MBR3-70 FS,SP20MBR3-71 FS","SP20MBR3-70,SP20MBR3-71",51,51,81,,12,12,19,,23,632,"HK1003 -Blackpoint D2 - Rev.0E DD30092021"
1-789,SI20HAA8E17,"(TOP-20HAA) HRSG CONDENSATE PREHEATING SYSTEM",5121,"HK1003-Rev.0E-3",TT_FinMile,"55902",-,-,-,0,TK_NotStart,21/04/2023,,21/04/2023,,"SI20LCL6A15 FS,SI20HA-6-56 FS,SI20LCL6A45 FS,SI20HA-4B40 FS,SI20LCL7A15 FS,SI20HA-6A48 FS,SI20HB-6-14 FS,SI20BZK7-180 FS","SI20LCL6A15,SI20HA-6-56,SI20LCL6A45,SI20HA-4B40,SI20LCL7A15,SI20HA-6A48,SI20HB-6-14,SI20BZK7-180","SI20HAA8F26 FS,SI20HAD8F25 FS,SI20HAD8G25 FS,SI20HAD8E25 FS","SI20HAA8F26,SI20HAD8F25,SI20HAD8G25,SI20HAD8E25",141,,141,,33,,33,,95,0,"HK1003 -Blackpoint D2 - Rev.0E DD30092021"
1-790,SI20UBF5-10,"(H) START PLACING FORMWORK 20UBE/UBF",5121,"HK1003-Rev.0E-3",TT_Mile,"55902",-,-,-,0,TK_NotStart,11/11/2021,,11/11/2021,,"SI20UBF5-05 FS,SI-----5-21& FS,SI--UBF2-81 FS,SI--UBF2-83 FS,SI--UBF2A75 FS,SI--UBF2A77 FS","SI20UBF5-05,SI-----5-21&,SI--UBF2-81,SI--UBF2-83,SI--UBF2A75,SI--UBF2A77","SI20UBF5-15 FS,SI20UBE5-18.01 FS","SI20UBF5-15,SI20UBE5-18.01",66,,66,,15,,15,,38,432,"HK1003 -Blackpoint D2 - Rev.0E DD30092021"
1-791,SI20UBF5-05,"WORK PREPARATION / EXCAVATION / PILE TRIMMING / PLATE WELDING 20UBE/UBF",5121,"HK1003-Rev.0E-3",TT_Task,"55902",-,-,-,0,TK_NotStart,14/10/2021,,06/11/2021,,"SI-----5-22 FS,SI-----5-21& FS,SI-----5-20 FS,SI--UBF2-89 SS,SI-P222-84 FS,SI-P222-128 FS,SI20UBF5-05.02 FF","SI-----5-22,SI-----5-21&,SI-----5-20,SI--UBF2-89,SI-P222-84,SI-P222-128,SI20UBF5-05.02","SI20UBX5-05 SS,SI20UBF5-10 FS,SI20UGU5-76 FS,SI-P222-131# FF,SI-P222-131# SS","SI20UBX5-05,SI20UBF5-10,SI20UGU5-76,SI-P222-131#,SI-P222-131#",62,,66,,14,,15,,34,464,"HK1003 -Blackpoint D2 - Rev.0E DD30092021"
1-792,SI20MBA8B10,"(TOP-20MBA5) GT HYDRAULIC CLEARANCE OPTIMIZATION SYSTEM",5121,"HK1003-Rev.0E-3",TT_FinMile,"55902",-,-,-,0,TK_NotStart,27/04/2023,,27/04/2023,,"SP20MB-4A40 FS,SI20MBA6F15 FS,SI20MBA6-40 FS,SI20MBQ7H15 FS,SI20MB-7J15 FS,SI20MB-4A25 FS,SI20MBV6-55 FS,SI20MB-7H15 FS,SI20MBA6A15 FS,SI20BZK7F26 FS,SI20BZK7L25 FS,SI20MB-6A15 FS,SI20BZK7F26 FF,SI20MBA8-23& FS","SP20MB-4A40,SI20MBA6F15,SI20MBA6-40,SI20MBQ7H15,SI20MB-7J15,SI20MB-4A25,SI20MBV6-55,SI20MB-7H15,SI20MBA6A15,SI20BZK7F26,SI20BZK7L25,SI20MB-6A15,SI20BZK7F26,SI20MBA8-23&","SI20MBA8-10 FS,SI20MB-8-25 FS","SI20MBA8-10,SI20MB-8-25",142,,142,,33,,33,,96,8,"HK1003 -Blackpoint D2 - Rev.0E DD30092021"
1-793,SI20MBA8D10,"(TOP-20MBA3) GT ADVANCED COMPRESSOR CLEANING SYSTEM",5121,"HK1003-Rev.0E-3",TT_FinMile,"55902",-,-,-,0,TK_NotStart,27/04/2023,,27/04/2023,,"SP20MB-4A40 FS,SI20MBA6F15 FS,SI20MBA6-40 FS,SI20MBQ7H15 FS,SI20MB-7J15 FS,SI20MB-4A25 FS,SI20MBV6-55 FS,SI20MB-7H15 FS,SI20BZK7L25 FS,SI20MBA6A15 FS,SI20BZK7F26 FS,SI20MB-6A15 FS,SI20MBA6D15 FS,SI20BZK7F26 FF,SI20MBA8-23& FS","SP20MB-4A40,SI20MBA6F15,SI20MBA6-40,SI20MBQ7H15,SI20MB-7J15,SI20MB-4A25,SI20MBV6-55,SI20MB-7H15,SI20BZK7L25,SI20MBA6A15,SI20BZK7F26,SI20MB-6A15,SI20MBA6D15,SI20BZK7F26,SI20MBA8-23&","SI20MBA8-10 FS,SI20MB-8-25 FS","SI20MBA8-10,SI20MB-8-25",142,,142,,33,,33,,96,8,"HK1003 -Blackpoint D2 - Rev.0E DD30092021"
1-794,SI20LBB7J15,"ELECTRICAL ERECTION / VALVES 20LBB-LBC80",5121,"HK1003-Rev.0E-3",TT_Task,"55902",-,-,-,0,TK_NotStart,01/04/2023,,07/04/2023,,"SI20BZK7E25 FF,SI20LBB6J47 FF,SI20BZP7D18 FS,SI20BZP7D19 FS,SI20BZP7-5 FS,SI20BZP7-196 FS,SI20BZP7-174 FS,SI20UMY6M10 FS,SI20UMY6M11 FS,SI20UMY6M12 FS,SI--2227-68 FS,SI--BZP2-05 FS,SI--PEE7-20 FS,SI--BZP4B40 FS","SI20BZK7E25,SI20LBB6J47,SI20BZP7D18,SI20BZP7D19,SI20BZP7-5,SI20BZP7-196,SI20BZP7-174,SI20UMY6M10,SI20UMY6M11,SI20UMY6M12,SI--2227-68,SI--BZP2-05,SI--PEE7-20,SI--BZP4B40","SI20LBA8J10 FS,SI20LBA8H10 FS,SI20LBG8A10 FS,SI20LBB8J11 FS,SI20BZK7D11# FF,SI20BZK7D11# SS","SI20LBA8J10,SI20LBA8H10,SI20LBG8A10,SI20LBB8J11,SI20BZK7D11#,SI20BZK7D11#",139,,139,,32,,32,,93,136,"HK1003 -Blackpoint D2 - Rev.0E DD30092021"
1-795,SI20LBB6J47,"INSULATION PIPES / VALVES FOR STEAM SYSTEM 20LBB-LBC80",5121,"HK1003-Rev.0E-3",TT_Task,"55902",-,-,-,0,TK_NotStart,04/03/2023,,07/04/2023,,"SI20LBB6J73 FS,SI20LBB6J15 FF,SI-P2I-15 FS","SI20LBB6J73,SI20LBB6J15,SI-P2I-15","SI20LBA8J10 FS,SI20LBA8H10 FS,SI20LBG8A10 FS,SI20--P6-75 FS,SI20LBB8J11 FS,SI20LBB7J15 FF,SI20---6A15# FF","SI20LBA8J10,SI20LBA8H10,SI20LBG8A10,SI20--P6-75,SI20LBB8J11,SI20LBB7J15,SI20---6A15#",135,,139,,31,,32,,92,136,"HK1003 -Blackpoint D2 - Rev.0E DD30092021"
1-796,SI20LBB6J15,"ERECTION, NDT PIPE / VALVES 20LBB-LBC80",5121,"HK1003-Rev.0E-3",TT_Task,"55902",-,-,-,0,TK_NotStart,31/08/2022,,15/11/2022,,"SI20HA-6-40 FF,SI20LBF6H47 FF,SI---1P6A05 FS,SI20--P6A00& SS,SI20MA-6A25 FS","SI20HA-6-40,SI20LBF6H47,SI---1P6A05,SI20--P6A00&,SI20MA-6A25","SI20--P6-73 FS,SI20ZTB6A00 FS,SI20LBB6J73 FS,SI20ZTA6A00 FS,SI20LBB6J47 FF,SI20HA-6-56 FF,SI20--P6-77 FS,SI20-6-16# FF,SI20-6-16# SS","SI20--P6-73,SI20ZTB6A00,SI20LBB6J73,SI20ZTA6A00,SI20LBB6J47,SI20HA-6-56,SI20--P6-77,SI20-6-16#,SI20-6-16#",108,,119,,25,,27,,79,896,"HK1003 -Blackpoint D2 - Rev.0E DD30092021"
1-797,SI20CYA8A10,"(TOP-20CY) COMMUNICATION SYSTEMS UMC",5121,"HK1003-Rev.0E-3",TT_FinMile,"55902",-,-,-,0,TK_NotStart,20/02/2023,,20/02/2023,,"SI--9998-20& SS,SI20CY-7-15 FS","SI--9998-20&,SI20CY-7-15","SI--CYA8-70 FS,SI20CJ-8-25 FS","SI--CYA8-70,SI20CJ-8-25",133,,133,,31,,31,,91,16,"HK1003 -Blackpoint D2 - Rev.0E DD30092021"
1-798,SI20UVM5-05,"WORK PREPARATION, EXCAVATION 20UVM01",5121,"HK1003-Rev.0E-3",TT_Task,"55902",-,-,-,0,TK_NotStart,06/05/2022,,11/05/2022,,"SI20UVM2-75 FS,SI-----5-22 FS,SI20UHA5-45 FS,SI-----5-21& FS,SI-----5-20 FS,SI20HA-6D18 FS,SI-P222-84 FS,SI20UVM2-86 FS","SI20UVM2-75,SI-----5-22,SI20UHA5-45,SI-----5-21&,SI-----5-20,SI20HA-6D18,SI-P222-84,SI20UVM2-86","SI20UVM5-11 FS,SI-P222-131# FF,SI-P222-131# SS","SI20UVM5-11,SI-P222-131#,SI-P222-131#",91,,92,,21,,21,,63,848,"HK1003 -Blackpoint D2 - Rev.0E DD30092021"
1-799,SI--2222-86,"CONTRACT INTO FORCE ERECTION CONTRACTOR (MECHANICAL)",5121,"HK1003-Rev.0E-3",TT_Mile,"55902",-,-,-,0,TK_NotStart,06/10/2021,,06/10/2021,,"SI--2222-81 FS,SI--2222-135 FS,SI--2222-139 FS","SI--2222-81,SI--2222-135,SI--2222-139","SI--2226-66 FS","SI--2226-66",61,,61,,14,,14,,31,440,"HK1003 -Blackpoint D2 - Rev.0E DD30092021"
1-800,SI--2222-81,"QUOTATION STAGE ERECTION CONTRACTOR (MECHANICAL)",5121,"HK1003-Rev.0E-3",TT_Task,"55902",-,-,-,100,TK_Complete,19/03/2021,19/03/2021,09/07/2021,09/07/2021,"SI--2222-60 FS","SI--2222-60","SI--2222-86 FS,SI--2222-135 FF","SI--2222-86,SI--2222-135",32,32,48,48,7,7,11,11,6,,"HK1003 -Blackpoint D2 - Rev.0E DD30092021"
1-801,SI--2222-60,"PREPARATION RFQ DOCUMENTS FOR ERECTION CONTRACTOR (MECHANICAL)",5121,"HK1003-Rev.0E-3",TT_Task,"55902",-,-,-,100,TK_Complete,15/01/2021,15/01/2021,18/03/2021,18/03/2021,"SI--HB-3-25 FF,SI-----1-03 FS,SI-----1-05 FS","SI--HB-3-25,SI-----1-03,SI-----1-05","SI--2222-81 FS,SI--2222-135 FS","SI--2222-81,SI--2222-135",23,23,32,32,5,5,7,7,2,,"HK1003 -Blackpoint D2 - Rev.0E DD30092021"
1-802,SI--2226-66,"MOBILISATION ERECTION CONTRACTOR (MECHANICAL)",5121,"HK1003-Rev.0E-3",TT_Task,"55902",-,-,-,0,TK_NotStart,07/11/2021,,15/01/2022,,"SI--2222-32 SS,SI--2222-86 FS,SI--3335-65 SS,SI20TPE9A7-28 FS","SI--2222-32,SI--2222-86,SI--3335-65,SI20TPE9A7-28","SI20MB-6-00 FS,SI20MA-6B00 FS,SI20MBR6-15 FS,SI20MA-6-03 FS,SI20MAW6-16 FS,SI20MAV6-15 FS,SI20HB-6A17 FF,SI--PEM6-20& SS,SI--PEM6-20& FS","SI20MB-6-00,SI20MA-6B00,SI20MBR6-15,SI20MA-6-03,SI20MAW6-16,SI20MAV6-15,SI20HB-6A17,SI--PEM6-20&,SI--PEM6-20&",66,,76,,15,,17,,37,440,"HK1003 -Blackpoint D2 - Rev.0E DD30092021"
1-803,SI--2227-67,"KICK OFF MEETING ERECTION CONTRACTOR (E AND I&C)",5121,"HK1003-Rev.0E-3",TT_Mile,"55902",-,-,-,0,TK_NotStart,20/01/2022,,20/01/2022,,"SI--2222-87 FS","SI--2222-87","SI--2227-68 SS","SI--2227-68",76,,76,,17,,17,,46,328,"HK1003 -Blackpoint D2 - Rev.0E DD30092021"
1-804,SI20UBA5-12,"(H) START PLACING FORMWORK 20UBA7xxx",5121,"HK1003-Rev.0E-3",TT_Mile,"55902",-,-,-,0,TK_NotStart,26/02/2022,,26/02/2022,,"SI20UBA5-7 FS,SI-----5-21& FS,SI--2222-132 FS,SI--UBA2-109 FS","SI20UBA5-7,SI-----5-21&,SI--2222-132,SI--UBA2-109","SI20UBA5-17 FS","SI20UBA5-17",82,,82,,19,,19,,51,424,"HK1003 -Blackpoint D2 - Rev.0E DD30092021"
1-805,SI20MAD8-10,"(TOP-20MAD) ST BEARING SYSTEM",5121,"HK1003-Rev.0E-3",TT_FinMile,"55902",-,-,-,0,TK_NotStart,10/04/2023,,10/04/2023,,"SI20MA-6D70 FS,SI20MAA6A15 FS,SI20MA-6D45 FS,SI20BZK7-28 FS,SI20BZK7C33 FS,SI20MAD6-71 FS,SI20MAD6-70 FS,SI20MAD7-15 FS,SI20MAD8-26& FS,SI20BZK7C34 FS","SI20MA-6D70,SI20MAA6A15,SI20MA-6D45,SI20BZK7-28,SI20BZK7C33,SI20MAD6-71,SI20MAD6-70,SI20MAD7-15,SI20MAD8-26&,SI20BZK7C34","SI20MA-8-10 FS,SI20MAD8-25 FS","SI20MA-8-10,SI20MAD8-25",140,,140,,32,,32,,94,32,"HK1003 -Blackpoint D2 - Rev.0E DD30092021"
1-806,SI20USX2-5,"(MS3) CONCRETE STRUCTURE FINAL DIMENSIONS, LOADS AVAILABLE 20USX",5121,"HK1003-Rev.0E-3",TT_FinMile,"55902",-,-,-,100,TK_Complete,31/08/2021,31/08/2021,31/08/2021,31/08/2021,"SI20QC-2-89 FS","SI20QC-2-89","SI20USX2-10 FS,SI20USX2-15 FS","SI20USX2-10,SI20USX2-15",56,56,56,56,13,13,13,13,27,,"HK1003 -Blackpoint D2 - Rev.0E DD30092021"
1-807,SI20USX2-15,"DETAIL DESIGN CONCRETE STRUCTURE 20USX",5121,"HK1003-Rev.0E-3",TT_Task,"55902",-,-,-,0,TK_NotStart,01/01/2022,,14/02/2022,,"SI20USX2-10 FS,SI20USX2-5 FS,SI-----1-01 FS","SI20USX2-10,SI20USX2-5,SI-----1-01","SI20USX2-40 FS,SI20USX2-43 FS","SI20USX2-40,SI20USX2-43",74,,80,,17,,18,,44,2392,"HK1003 -Blackpoint D2 - Rev.0E DD30092021"
1-808,SI20MBA6D15,"ERECTION WASH WATER TANK 20MBA",5121,"HK1003-Rev.0E-3",TT_Task,"55902",-,-,-,0,TK_NotStart,22/10/2022,,04/11/2022,,"SI20MBA2D05 FS,SI20MBA4-40 FS,SI20MBA6-40 FS","SI20MBA2D05,SI20MBA4-40,SI20MBA6-40","SI20MBA6D40 SS,SI20MBA8D10 FS","SI20MBA6D40,SI20MBA8D10",116,,117,,27,,27,,84,224,"HK1003 -Blackpoint D2 - Rev.0E DD30092021"
1-809,SI20SGC8-10,"(TOP-20SGC-01) FF SPRAY DELUGE SYSTEMS FOR UBE/UBF and UBA CABLE AREA",5121,"HK1003-Rev.0E-3",TT_FinMile,"55902",-,-,-,0,TK_NotStart,17/03/2023,,17/03/2023,,"SI20SGA8B27 FS,SI20SGA8B26 SS,SI20SGC6-15 FS,SI20SGC6J23 FS,SI20SGY7A19 FS,SI20SGY7A20 FS","SI20SGA8B27,SI20SGA8B26,SI20SGC6-15,SI20SGC6J23,SI20SGY7A19,SI20SGY7A20","SI20SGC8-65 FS","SI20SGC8-65",136,,136,,31,,31,,92,16,"HK1003 -Blackpoint D2 - Rev.0E DD30092021"
1-810,SI20QC-6-15,"ERECTION DOSING CONTAINER QC",5121,"HK1003-Rev.0E-3",TT_Task,"55902",-,-,-,0,TK_NotStart,17/08/2022,,30/08/2022,,"SI20QC-2-06 FS,SI20USX5-25 FS,SI20HA-6D17 FS,SI20QC-4-40 FS,SI20TP-131& FS","SI20QC-2-06,SI20USX5-25,SI20HA-6D17,SI20QC-4-40,SI20TP-131&","SI20QC-6-40 SS,SI20QC-7-15 FS","SI20QC-6-40,SI20QC-7-15",106,,108,,24,,25,,78,1632,"HK1003 -Blackpoint D2 - Rev.0E DD30092021"
1-811,SI--SMM2-85,"CONTRACT INTO FORCE CRANES 20SMM01/02 FOR 20UMC",5121,"HK1003-Rev.0E-3",TT_Mile,"55902",-,-,-,100,TK_Complete,30/03/2021,30/03/2021,30/03/2021,30/03/2021,"SI--SMM2-80 FS,SI-----1-05 FS,SI--3332-76 FS","SI--SMM2-80,SI-----1-05,SI--3332-76","SI--SMM2-86 FS,SI20SMM3-26 FS,SI--SMM2-87 FS,SI--SMM2-90 FS,SI--SMM2-88 FS","SI--SMM2-86,SI20SMM3-26,SI--SMM2-87,SI--SMM2-90,SI--SMM2-88",34,34,34,34,8,8,8,8,7,,"HK1003 -Blackpoint D2 - Rev.0E DD30092021"
1-812,SI20HB-3F80,"(RFS) READY FOR SHIPMENT OUTLET DUCT HRSG 20",5121,"HK1003-Rev.0E-3",TT_FinMile,"55902",-,-,-,0,TK_NotStart,07/02/2022,,07/02/2022,,"SI20HB-4B13 FS","SI20HB-4B13","SI20HB-4F25 FS","SI20HB-4F25",79,,79,,18,,18,,48,3000,"HK1003 -Blackpoint D2 - Rev.0E DD30092021"
1-813,SI20HB-3F26,"MANUFACTURING OUTLET DUCT HRSG 20",5121,"HK1003-Rev.0E-3",TT_Task,"55902",-,-,-,68,TK_Active,28/02/2021,28/02/2021,10/01/2022,,"SI20HB-3F25 FS","SI20HB-3F25","SI20HB-3D26 SS,SI20HB-3E26 SS,SI20HB-3B73 FS","SI20HB-3D26,SI20HB-3E26,SI20HB-3B73",30,30,75,,7,7,17,,5,3000,"HK1003 -Blackpoint D2 - Rev.0E DD30092021"
1-814,SI--C--2D56,"DESIGN REVIEW BOP AUTOMATION",5121,"HK1003-Rev.0E-3",TT_FinMile,"55902",-,-,-,0,TK_NotStart,24/04/2022,,24/04/2022,,"SI--C--2B82 FF,SI--C--2-55 FS,SI--C--2B35 FF,SI--C--2C55 FS","SI--C--2B82,SI--C--2-55,SI--C--2B35,SI--C--2C55","SI--C--2C71 FS,SI--C--2B80 FS","SI--C--2C71,SI--C--2B80",90,,90,,21,,21,,59,1712,"HK1003 -Blackpoint D2 - Rev.0E DD30092021"
1-815,SI20BZL7E15,"LIGHTING AND SMALL POWER INSTALLATION 20UBA8110/20",5121,"HK1003-Rev.0E-3",TT_Task,"55902",-,-,-,0,TK_NotStart,01/12/2022,,14/12/2022,,"SI--BZL2-05 FS,SI20UBA7-16 FS,SI--BZL4-40 FS,SI20UBA7-16 FF","SI--BZL2-05,SI20UBA7-16,SI--BZL4-40,SI20UBA7-16","SI20UBA8-11 FS,SI20BZL7-16# FF,SI20BZL7-16# SS,SI20BZK7F29 FS","SI20UBA8-11,SI20BZL7-16#,SI20BZL7-16#,SI20BZK7F29",121,,123,,28,,28,,86,984,"HK1003 -Blackpoint D2 - Rev.0E DD30092021"
1-816,SP20MBR2-10,"SYSTEM DESCRIPTION DIFFUSER 20MBR",5121,"HK1003-Rev.0E-3",TT_Mile,"55902",-,-,-,100,TK_Complete,12/03/2021,12/03/2021,12/03/2021,12/03/2021,"SP20MBR2A80 FS,SI-----1-04 SS","SP20MBR2A80,SI-----1-04","SI--M--2D20 SS","SI--M--2D20",31,31,31,31,7,7,7,7,6,,"HK1003 -Blackpoint D2 - Rev.0E DD30092021"
1-817,SP--CYE2-70,"I&C INPUT (P&ID, DESCR., SIGNAL EXCHANGE DWGS) FIRE FIGHTING / GAS DETECTION SGJ / CYQ / CYE",5121,"HK1003-Rev.0E-3",TT_Mile,"55902",-,-,-,100,TK_Complete,16/04/2021,16/04/2021,16/04/2021,16/04/2021,"SI-----1-04 SS","SI-----1-04","SP--MB-2A55 FS","SP--MB-2A55",36,36,36,36,8,8,8,8,8,,"HK1003 -Blackpoint D2 - Rev.0E DD30092021"
1-818,SI20BFG8-50,"LV AVAILABLE FOR 20UBA (ENERGISING TEMPORARY POWER)",5121,"HK1003-Rev.0E-3",TT_Mile,"55902",-,-,-,0,TK_NotStart,14/02/2023,,14/02/2023,,"SI20BFA8-25 FS","SI20BFA8-25","SI20MAX8-25 FS,SI20BFA8-35 FS,SI20MAD8-25 FS,SI20SGA8-26 FS,SI20MAW8-25 FS,SI20QCB8-25 FS,SI20PGB8B25 FS,SI20SGC8-37 FS,SI20LAC8B25 FS,SI20MA-8-25 FS,SI20MAG8-25 FS,SI20MAJ8-25 FS,SI20QC-8-25 FS,SI20MAV8-25 FS,SI20SGA8B27 FS,SI20UBA8G25 FS,SI20BZL8A27 FS","SI20MAX8-25,SI20BFA8-35,SI20MAD8-25,SI20SGA8-26,SI20MAW8-25,SI20QCB8-25,SI20PGB8B25,SI20SGC8-37,SI20LAC8B25,SI20MA-8-25,SI20MAG8-25,SI20MAJ8-25,SI20QC-8-25,SI20MAV8-25,SI20SGA8B27,SI20UBA8G25,SI20BZL8A27",132,,132,,30,,30,,90,16,"HK1003 -Blackpoint D2 - Rev.0E DD30092021"
1-819,SI20GM-8B27,"COLD COMMISSIONING PLANT DRAINAGE SYSTEM FOR 20ULA GM",5121,"HK1003-Rev.0E-3",TT_Task,"55902",-,-,-,0,TK_NotStart,29/03/2023,,04/04/2023,,"SI20GM-6H15 FS,SI--9998-22& FS,SI-PM-40 FS,SI20TPM25A8-30 FS,SI20TPC1A8-30 FS,SI20TPC2A8-30 FS,SI20TPC3A8-30 FS,SI20TPC4A8-30 FS,SI20TPC5A8-30 FS,SI20TPC6A8-30 FS,SI20TPC7A8-30 FS,SI20TPC8A8-30 FS,SI20TPC9A8-30 FS,SI20TPC10A8-30 FS,SI20BFA8-25 FS,SI20GM-8B25 FS,SI20B--8-52 FS","SI20GM-6H15,SI--9998-22&,SI-PM-40,SI20TPM25A8-30,SI20TPC1A8-30,SI20TPC2A8-30,SI20TPC3A8-30,SI20TPC4A8-30,SI20TPC5A8-30,SI20TPC6A8-30,SI20TPC7A8-30,SI20TPC8A8-30,SI20TPC9A8-30,SI20TPC10A8-30,SI20BFA8-25,SI20GM-8B25,SI20B--8-52","SI20GM-8E25 FS,SI20LCA8M25 FS,SI20UVM-8E27 FS","SI20GM-8E25,SI20LCA8M25,SI20UVM-8E27",138,,139,,32,,32,,93,128,"HK1003 -Blackpoint D2 - Rev.0E DD30092021"
1-820,SI--ZTB2A85,"CONTRACT INTO FORCE STEAM BLOWING PIPING",5121,"HK1003-Rev.0E-3",TT_Mile,"55902",-,-,-,100,TK_Complete,27/05/2021,27/05/2021,27/05/2021,27/05/2021,"SI--ZTB2A75 FS","SI--ZTB2A75","SI--ZTB3A25 FS","SI--ZTB3A25",42,42,42,42,9,9,9,9,14,,"HK1003 -Blackpoint D2 - Rev.0E DD30092021"
1-821,SI--ZTB2A75,"INTEGRATION OF ACID CLEANING SYSTEM ZTB",5121,"HK1003-Rev.0E-3",TT_Task,"55902",-,-,-,100,TK_Complete,15/04/2021,15/04/2021,26/05/2021,26/05/2021,"SI--ZTA2A00 FS","SI--ZTA2A00","SI--ZTB2A85 FS","SI--ZTB2A85",36,36,42,42,8,8,9,9,8,,"HK1003 -Blackpoint D2 - Rev.0E DD30092021"
1-822,SI20LBA6J15,"ERECTION, NDT PIPE / VALVES 20LBA80 (BOP)",5121,"HK1003-Rev.0E-3",TT_Task,"55902",-,-,-,0,TK_NotStart,27/08/2022,,30/12/2022,,"SI20MA-6A11 FS,SI20MAN6E40 FF,SI---1P6A05 FS,SI20LBA6H15 SS","SI20MA-6A11,SI20MAN6E40,SI---1P6A05,SI20LBA6H15","SI20LBA6J70 FS,SI20QU-6H15 FF,SI20QC-6H17 FF,SI20LBA6J45 FS,SI--LBA6J15# FF,SI20LAC8B25 FS,SI20--P6-73 FS,SI--LBA6J15# SS,SI20LBA6J73 FS,SI20--P6-77 FS,SI20HA-6-56 FS,SI20-6-16# FF,SI20-6-16# SS","SI20LBA6J70,SI20QU-6H15,SI20QC-6H17,SI20LBA6J45,SI--LBA6J15#,SI20LAC8B25,SI20--P6-73,SI--LBA6J15#,SI20LBA6J73,SI20--P6-77,SI20HA-6-56,SI20-6-16#,SI20-6-16#",108,,125,,25,,29,,79,584,"HK1003 -Blackpoint D2 - Rev.0E DD30092021"
1-823,SI20MAV7-15,"ELECTRICAL ERECTION FOR MAV MODUL",5121,"HK1003-Rev.0E-3",TT_Task,"55902",-,-,-,0,TK_NotStart,09/10/2022,,22/10/2022,,"SI20MAV6-15 FS,SI20BZP7-110 SS","SI20MAV6-15,SI20BZP7-110","SI20MAV6-70 FS,SI20MAW7-15 FS,SI20MAV7-30 FS,SI20BZK7D11# FF,SI20BZK7D11# SS,SI20BZK7E27 SS","SI20MAV6-70,SI20MAW7-15,SI20MAV7-30,SI20BZK7D11#,SI20BZK7D11#,SI20BZK7E27",114,,116,,26,,27,,83,392,"HK1003 -Blackpoint D2 - Rev.0E DD30092021"
1-824,SI20GHC7H15,"ELECTRICAL ERECTION / VALVES DEMIN WATER 20GHC",5121,"HK1003-Rev.0E-3",TT_Task,"55902",-,-,-,0,TK_NotStart,17/11/2022,,07/12/2022,,"SI20GHC6H15 FF,SI20BZP7D18 FS,SI20BZP7D19 FS,SI20BZP7-5 FS,SI20BZP7-196 FS,SI20BZP7-174 FS,SI20UMY6M10 FS,SI20UMY6M11 FS,SI20UMY6M12 FS,SI--2227-68 FS,SI--BZP2-05 FS,SI--PEE7-20 FS,SI--BZP4B40 FS","SI20GHC6H15,SI20BZP7D18,SI20BZP7D19,SI20BZP7-5,SI20BZP7-196,SI20BZP7-174,SI20UMY6M10,SI20UMY6M11,SI20UMY6M12,SI--2227-68,SI--BZP2-05,SI--PEE7-20,SI--BZP4B40","SI20GHC8H25 FS,SI20BZK7D11# FF,SI20BZK7D11# SS","SI20GHC8H25,SI20BZK7D11#,SI20BZK7D11#",119,,122,,27,,28,,85,1072,"HK1003 -Blackpoint D2 - Rev.0E DD30092021"
1-825,SI--ZTB4A40,"(OTD-OS) ON SITE PIPING FOR STEAM BLOWING SYSTEM ZTB",5121,"HK1003-Rev.0E-3",TT_FinMile,"55902",-,-,-,0,TK_NotStart,03/03/2023,,03/03/2023,,"SI--ZTB4A25 FS","SI--ZTB4A25","SI20ZTB6A00 FS,SI--ZTA4A40 FS","SI20ZTB6A00,SI--ZTA4A40",134,,134,,31,,31,,92,0,"HK1003 -Blackpoint D2 - Rev.0E DD30092021"
1-826,SP--MB-2A55,"FINAL ELECTRICAL LOAD DATA (VEL) FOR GT&GT-AUX. (EIF)",5121,"HK1003-Rev.0E-3",TT_FinMile,"55902",-,-,-,100,TK_Complete,01/07/2021,01/07/2021,01/07/2021,01/07/2021,"SP20MBL2-70 FS,SP--CYE2-70 FS,SP--MB-2A10 FS,SP--MB-2G40 FS,SP--MB-2E40 FS,SP--MB-2C05 FS,SP--MPB2E70 FS","SP20MBL2-70,SP--CYE2-70,SP--MB-2A10,SP--MB-2G40,SP--MB-2E40,SP--MB-2C05,SP--MPB2E70","SI--B--2A55 FS,SI--PM-2-60 FS,SP--B--2-52 FS","SI--B--2A55,SI--PM-2-60,SP--B--2-52",47,47,47,47,11,11,11,11,19,,"HK1003 -Blackpoint D2 - Rev.0E DD30092021"
1-827,SP--MB-2G40,"WIRING DIAGRAMS GT (EIF)",5121,"HK1003-Rev.0E-3",TT_FinMile,"55902",-,-,-,100,TK_Complete,15/04/2021,15/04/2021,15/04/2021,15/04/2021,"SP--MB-2B40 FS,SP--MB-2D40 FS,SP--MB-2-12 FS","SP--MB-2B40,SP--MB-2D40,SP--MB-2-12","SP--MB-2A55 FS","SP--MB-2A55",36,36,36,36,8,8,8,8,8,,"HK1003 -Blackpoint D2 - Rev.0E DD30092021"
1-828,SP--MB-2E40,"LIST OF MEASURING DEVICES GT&GT-AUX. (MPL) (EIF)",5121,"HK1003-Rev.0E-3",TT_FinMile,"55902",-,-,-,100,TK_Complete,01/04/2021,01/04/2021,01/04/2021,01/04/2021,"SP--MB-2-40 FS","SP--MB-2-40","SP--MB-2A55 FS","SP--MB-2A55",34,34,34,34,8,8,8,8,7,,"HK1003 -Blackpoint D2 - Rev.0E DD30092021"
1-829,SP--MB-2-50,"PREL. ELECTRICAL LOAD DATA (VEL) FOR GT&GT-AUX.",5121,"HK1003-Rev.0E-3",TT_FinMile,"55902",-,-,-,100,TK_Complete,01/04/2021,01/04/2021,01/04/2021,01/04/2021,"SP--MB-2-85 FS","SP--MB-2-85","SI--PM-2-30 FS,SP--B--2-50 FS","SI--PM-2-30,SP--B--2-50",34,34,34,34,8,8,8,8,7,,"HK1003 -Blackpoint D2 - Rev.0E DD30092021"
1-830,SI20B--8-50,"MV AVAILABLE (BACK ENERGISING) VIA 20BAT",5121,"HK1003-Rev.0E-3",TT_FinMile,"55902",-,-,-,0,TK_NotStart,10/04/2023,,10/04/2023,,"SI--BAW8A10 SS,SI--2226-55 FS,SI20SGC8-25 FS,SI20BAA7-56 FS,SI20CPD8-37 FS,SI--BRU8-21 FS,SI20SGM8-25 FS,SI20GM-8B25 FS,SI20CR-8-25 FS,SI-----8-07& SS,SI20CH-8A25 FS,SI20BBT8-25 FS,SI20B--8-10& FS,SI--BAW8B10 FS,SI20PUR8-25 FS,SI20ACA9-85 FS,SI20SGC8-26 FS,SI20UBA5-92 FS,SI-----8-8& FS,SI20BZK7B33 FS,SI20SGC8-27 FS,SI20SGC6J16 FS,SI20SGC6J18 FS,SI20SGC6J15 FS,SI20SGC6J20 FS,SI20BZK7A35 FS,SI20M--8-25 FS,SI20M--8-68 FS,SI20PUR8-26 FS,SI20PUR8-27 FS,SI20TPF1A8-30 FS,SI20TPF1B8-30 FS,SI20TPF1C8-30 FS,SI20TPF2A8-30 FS,SI20BZK7B42 FS,SI20UBY5-63 FS,SI20BZK7B43 FS,SI20BZK7B44 FS,SI20BZK7B45 FS,SI20CJT8A20 FS,SI20E--7-15& FS","SI--BAW8A10,SI--2226-55,SI20SGC8-25,SI20BAA7-56,SI20CPD8-37,SI--BRU8-21,SI20SGM8-25,SI20GM-8B25,SI20CR-8-25,SI-----8-07&,SI20CH-8A25,SI20BBT8-25,SI20B--8-10&,SI--BAW8B10,SI20PUR8-25,SI20ACA9-85,SI20SGC8-26,SI20UBA5-92,SI-----8-8&,SI20BZK7B33,SI20SGC8-27,SI20SGC6J16,SI20SGC6J18,SI20SGC6J15,SI20SGC6J20,SI20BZK7A35,SI20M--8-25,SI20M--8-68,SI20PUR8-26,SI20PUR8-27,SI20TPF1A8-30,SI20TPF1B8-30,SI20TPF1C8-30,SI20TPF2A8-30,SI20BZK7B42,SI20UBY5-63,SI20BZK7B43,SI20BZK7B44,SI20BZK7B45,SI20CJT8A20,SI20E--7-15&","SI20LCA8M25 FS,SI20MB-9-15 SS,SI20BBA8-35 FS,SI20EK-8-25 FS,SI20PGB8B25 FS,SI20XKA8-25 FS,SI20CPB8-25 FS,SI20PAB8-25 FS,SI--CYA8-70 FS,SI20CPC8-25 FS,SI--CKA2-08 FS,SI20BZL8B27 FS,SI20BZL8B27 SS,SI20SGC8-34 FS,SI20B--8-51 FS,SI20BFT8-76 FF,SI20UBA8-50 FS,SI20SGC8-33 FS,SI20BF-8-21 FS,SI20PGB8B25 SS,SI20BFA8-35 FS,SI20SGC8-37 FS,SI20MAW8-25 FS,SI20MAJ8-25 FS,SI20MAV8-25 FS,SI20QC-8-25 FS,SI20MAD8-25 FS,SI20MA-8-25 FS,SI20SGA8-26 FS,SI20MAX8-25 FS,SI20LAC8B25 FS,SI20QCB8-25 FS,SI20MAG8-25 FS,SI20GHD8A25 FS,SI20MBX8E25 FS,SI20MBX8-25 FS,SI20MB-8E25 FS,SI20MBA8-25 FS,SI20MBL8-25 FS,SI20MKW8H25 FS,SI20MBA8E25 FS,SI20MB-8-25 FS,SI20GHD8A25 SS,SI20MBV8H25 FS,SI20MBH8-25 FS,SI20MKC8-77 FS,SI20MKC8-76 FS,SI20MKC8-75 FS,SI20M--9-70 FS,SI20MB-9-15 FS,SI20MKA9-35 FS,SI20LDK8B25 FF,SI20SAM8-26 FS,SI20MBV8-155 FS,SI20PAD8-57 FS,SI20PAD8-58 FS,SI20PAD8-59 FS,SI20BZK7-201 FS,SI20--P6-78 FS,SI20--P6-76 FS,SI20SCA8-17 FS,SI20SGJ8-30 FS,SI20GKB8H25 FS,SI20UBH8-27 FS,SI20HSJ8-26 FS,SI20SGC8-31 FS,SI20CPC8A27 FS,SI20UBA8G26 FS,SI20SGM8-42 FS,SI20CYA8-30 FS,SI20SGM8-33 FS,SI20BZL8A27 FS,SI20PCB8M25 FS","SI20LCA8M25,SI20MB-9-15,SI20BBA8-35,SI20EK-8-25,SI20PGB8B25,SI20XKA8-25,SI20CPB8-25,SI20PAB8-25,SI--CYA8-70,SI20CPC8-25,SI--CKA2-08,SI20BZL8B27,SI20BZL8B27,SI20SGC8-34,SI20B--8-51,SI20BFT8-76,SI20UBA8-50,SI20SGC8-33,SI20BF-8-21,SI20PGB8B25,SI20BFA8-35,SI20SGC8-37,SI20MAW8-25,SI20MAJ8-25,SI20MAV8-25,SI20QC-8-25,SI20MAD8-25,SI20MA-8-25,SI20SGA8-26,SI20MAX8-25,SI20LAC8B25,SI20QCB8-25,SI20MAG8-25,SI20GHD8A25,SI20MBX8E25,SI20MBX8-25,SI20MB-8E25,SI20MBA8-25,SI20MBL8-25,SI20MKW8H25,SI20MBA8E25,SI20MB-8-25,SI20GHD8A25,SI20MBV8H25,SI20MBH8-25,SI20MKC8-77,SI20MKC8-76,SI20MKC8-75,SI20M--9-70,SI20MB-9-15,SI20MKA9-35,SI20LDK8B25,SI20SAM8-26,SI20MBV8-155,SI20PAD8-57,SI20PAD8-58,SI20PAD8-59,SI20BZK7-201,SI20--P6-78,SI20--P6-76,SI20SCA8-17,SI20SGJ8-30,SI20GKB8H25,SI20UBH8-27,SI20HSJ8-26,SI20SGC8-31,SI20CPC8A27,SI20UBA8G26,SI20SGM8-42,SI20CYA8-30,SI20SGM8-33,SI20BZL8A27,SI20PCB8M25",140,,140,,32,,32,,94,16,"HK1003 -Blackpoint D2 - Rev.0E DD30092021"
1-831,SI20MKA6F08,"FINAL COUPLING OF SLIPRING SHAFT MKA",5121,"HK1003-Rev.0E-3",TT_Task,"55902",-,-,-,0,TK_NotStart,19/02/2023,,23/02/2023,,"SI20MA-6B38 FS,SI20MA-6D57 FS,SI20MKA6-34 FS,SI20MKA5F25 FS","SI20MA-6B38,SI20MA-6D57,SI20MKA6-34,SI20MKA5F25","SI20MKA8-72 FS,SI20MKA6F05# FF,SI20MKA8-10 FS","SI20MKA8-72,SI20MKA6F05#,SI20MKA8-10",133,,133,,31,,31,,91,624,"HK1003 -Blackpoint D2 - Rev.0E DD30092021"
1-832,SI20MKA6F15,"FINAL ASSEMBLING OF SLIPRING SET MKA",5121,"HK1003-Rev.0E-3",TT_Task,"55902",-,-,-,0,TK_NotStart,09/02/2023,,21/02/2023,,"SI20MKA6-26 FS,SI20MA-6B35 FS","SI20MKA6-26,SI20MA-6B35","SI20MKA5F25 SS,SI20MKA8-10 FS,SI20MKA6-80 FS","SI20MKA5F25,SI20MKA8-10,SI20MKA6-80",131,,133,,30,,31,,90,288,"HK1003 -Blackpoint D2 - Rev.0E DD30092021"
1-833,SI20MKA5F25,"GROUTING OF SLIPRING BASEPLATES MKA",5121,"HK1003-Rev.0E-3",TT_Task,"55902",-,-,-,0,TK_NotStart,14/02/2023,,18/02/2023,,"SI20MKA6F15 SS","SI20MKA6F15","SI20MKA6F08 FS","SI20MKA6F08",132,,133,,30,,31,,90,624,"HK1003 -Blackpoint D2 - Rev.0E DD30092021"
1-834,SI20SAM8-26,"COLD COMMISSIONING HVAC FOR MPB NOISE ENCLOSURE",5121,"HK1003-Rev.0E-3",TT_Task,"55902",-,-,-,0,TK_NotStart,26/05/2023,,08/06/2023,,"SI20SAM8-10 FS,SI20SAM8-29 FS,SI-PM-40 FS,SI20B--8-52 FS,SI20B--8-50 FS,SI20MB-8E25 FS","SI20SAM8-10,SI20SAM8-29,SI-PM-40,SI20B--8-52,SI20B--8-50,SI20MB-8E25","SI20MB-9-05 FS,SI20SGJ8-21 FS","SI20MB-9-05,SI20SGJ8-21",146,,148,,34,,34,,97,8,"HK1003 -Blackpoint D2 - Rev.0E DD30092021"
1-835,SI20QJ-6B42,"ERECTION GAS SUPPLY BOTTLES FOR CO2",5121,"HK1003-Rev.0E-3",TT_Task,"55902",-,-,-,0,TK_NotStart,24/09/2022,,30/09/2022,,"SI20UTG5-16 FS,SI20MB-6-10 FS,SI20QJ-4B40 FS,SI20UTG5-26 FS,SI20UTG5-36 FS,SI20UTG5-46 FS,SI20UTG5-56 FS,SI20UTG5-66 FS,SI20UTG2S-38 FS,SI20UTG2S-140 FS,SI20UTG2S-60 FS,SI20UTG2S-80 FS,SI20UTG2S-100 FS,SI20UTG2S-120 FS,SI20EGx6-65 FS","SI20UTG5-16,SI20MB-6-10,SI20QJ-4B40,SI20UTG5-26,SI20UTG5-36,SI20UTG5-46,SI20UTG5-56,SI20UTG5-66,SI20UTG2S-38,SI20UTG2S-140,SI20UTG2S-60,SI20UTG2S-80,SI20UTG2S-100,SI20UTG2S-120,SI20EGx6-65","SI20QJ-8B11 FS,SI20QJ-8B13 FS","SI20QJ-8B11,SI20QJ-8B13",112,,112,,26,,26,,81,1664,"HK1003 -Blackpoint D2 - Rev.0E DD30092021"
1-836,SI--3332-27,"SINGLE LINE DIAGRAM READY",5121,"HK1003-Rev.0E-3",TT_Mile,"55902",-,-,-,100,TK_Complete,15/01/2021,15/01/2021,15/01/2021,15/01/2021,"SI--B--2-50 FS,SI-----1-05 FS","SI--B--2-50,SI-----1-05","SI--PM-2-30 FS,SI--BAA2-15 SS,SI--3332-25 FS,SP--B--2-59 FS,SI--CHY2-15 FS,SI20BFA2-15 FS,SI20BUK2-15 FS,SI20BTA2-15 FS,SI--BBA2-15 FS,SP--B--2-60 FS,SP--CJT2-77 FS,SI20CJF2-15 FS,SI--UBA2G75 FS","SI--PM-2-30,SI--BAA2-15,SI--3332-25,SP--B--2-59,SI--CHY2-15,SI20BFA2-15,SI20BUK2-15,SI20BTA2-15,SI--BBA2-15,SP--B--2-60,SP--CJT2-77,SI20CJF2-15,SI--UBA2G75",23,23,23,23,5,5,5,5,2,,"HK1003 -Blackpoint D2 - Rev.0E DD30092021"
1-837,SI20HA-3B80,"(RFS) READY FOR SHIPMENT PIPING HRSG20_1st Part (LB CARBON STEEL)  incl. Primary Piping Supports",5121,"HK1003-Rev.0E-3",TT_FinMile,"55902",-,-,-,0,TK_NotStart,27/01/2022,,27/01/2022,,"SI20HA-4B12 FS","SI20HA-4B12","SI20HA-4B25 FS","SI20HA-4B25",77,,77,,18,,18,,47,544,"HK1003 -Blackpoint D2 - Rev.0E DD30092021"
1-838,SI20HA-4B25,"TRANSPORT PIPING HRSG20_1st Part (LB CARBON STEEL)",5121,"HK1003-Rev.0E-3",TT_Task,"55902",-,-,-,0,TK_NotStart,28/01/2022,,26/02/2022,,"SI20HA-3B80 FS","SI20HA-3B80","SI20HA-4B40 FS","SI20HA-4B40",77,,82,,18,,19,,47,544,"HK1003 -Blackpoint D2 - Rev.0E DD30092021"
1-839,SI20LCB3B80,"(RFS) READY FOR SHIPMENT CONDENSATE EXTRACTION PUMP 20LCB",5121,"HK1003-Rev.0E-3",TT_FinMile,"55902",-,-,-,0,TK_NotStart,01/06/2022,,01/06/2022,,"SI20LCB3B28 FS,SI20LCB4B10 FS","SI20LCB3B28,SI20LCB4B10","SI20LCB4B25 SS","SI20LCB4B25",95,,95,,22,,22,,67,344,"HK1003 -Blackpoint D2 - Rev.0E DD30092021"
1-840,SI--CKA2-08,"REMOTE ACCESS TO ERLANGEN",5121,"HK1003-Rev.0E-3",TT_Mile,"55902",-,-,-,0,TK_NotStart,11/04/2023,,11/04/2023,,"SI--CKA7-15 FS,SI20B--8-50 FS","SI--CKA7-15,SI20B--8-50","SI20MB-9-15 FS","SI20MB-9-15",140,,140,,32,,32,,94,408,"HK1003 -Blackpoint D2 - Rev.0E DD30092021"
1-841,SI20BZK7B32,"CABLING FROM 20UBA (10x) TO 20UBN",5121,"HK1003-Rev.0E-3",TT_Task,"55902",-,-,-,0,TK_NotStart,07/12/2022,,31/01/2023,,"SI20BZK7-25 FS,SI20BZK4-41 FS,SI--B--7-55 FS,SI--B--2-68 FS,SI20XKA7-15 FS,SI20BZK7-25 SS,SI--B--2-93 FS,SI--BZK4-40 FS","SI20BZK7-25,SI20BZK4-41,SI--B--7-55,SI--B--2-68,SI20XKA7-15,SI20BZK7-25,SI--B--2-93,SI--BZK4-40","SI20XKA8-10 FS,SI20UBA8-12 FS,SI20BZK7D10# FF,SI20BZK7D10# SS","SI20XKA8-10,SI20UBA8-12,SI20BZK7D10#,SI20BZK7D10#",122,,130,,28,,30,,86,64,"HK1003 -Blackpoint D2 - Rev.0E DD30092021"
1-842,SI20UEY5-45,"(RFE) FOUNDATION 20UEY03-05",5121,"HK1003-Rev.0E-3",TT_FinMile,"55902",-,-,-,0,TK_NotStart,07/04/2022,,07/04/2022,,"SI20UEY5-15 FS","SI20UEY5-15","SI20EKG6H15 FF,SI20EKG6H15 FS,SI20GHD6H15 FS,SI20UBY5-57 FS,SI20BZP7-174 FS,SI20BZK7B26 FS,SI--BRU8-22 FS,SI20CR-8-10 FS,SI20UBA8-12 FS,SI--2226-55 FS,SI--2222-35 FS,SI20BZP7-193 FS,SI20UEZ6B-10 FS","SI20EKG6H15,SI20EKG6H15,SI20GHD6H15,SI20UBY5-57,SI20BZP7-174,SI20BZK7B26,SI--BRU8-22,SI20CR-8-10,SI20UBA8-12,SI--2226-55,SI--2222-35,SI20BZP7-193,SI20UEZ6B-10",87,,87,,20,,20,,56,1016,"HK1003 -Blackpoint D2 - Rev.0E DD30092021"
1-843,SI20UEY5-15,"CONSTRUCTION FOUNDATION 20UEY03-05",5121,"HK1003-Rev.0E-3",TT_Task,"55902",-,-,-,0,TK_NotStart,04/03/2022,,07/04/2022,,"SI20UEY5-10 FS,SI20UEY5-104 FS","SI20UEY5-10,SI20UEY5-104","SI20UEY5-45 FS,SI20UMX5-06 SS","SI20UEY5-45,SI20UMX5-06",82,,87,,19,,20,,51,1016,"HK1003 -Blackpoint D2 - Rev.0E DD30092021"
1-844,SI20UEY5-10,"(H) START PLACING FORMWORK 20UEY03-05",5121,"HK1003-Rev.0E-3",TT_Mile,"55902",-,-,-,0,TK_NotStart,04/03/2022,,04/03/2022,,"SI20UEY2-75 SS,SI20UEY5-06 FS,SI-----5-21& FS,SI20UEY5-104 FS,SI20UEY2-90 FS","SI20UEY2-75,SI20UEY5-06,SI-----5-21&,SI20UEY5-104,SI20UEY2-90","SI20UEY5-15 FS","SI20UEY5-15",82,,82,,19,,19,,51,1016,"HK1003 -Blackpoint D2 - Rev.0E DD30092021"
1-845,SI20UEY5-06,"WORK PREPARATION, EXCAVATION 20UEY03-05",5121,"HK1003-Rev.0E-3",TT_Task,"55902",-,-,-,0,TK_NotStart,14/02/2022,,27/02/2022,,"SI-----5-22 FS,SI-----5-21& FS,SI-----5-20 FS,SI-P222-84 FS,SI20UEY2-89 FS,SI20UEY2-75 FS","SI-----5-22,SI-----5-21&,SI-----5-20,SI-P222-84,SI20UEY2-89,SI20UEY2-75","SI20UEY5-10 FS,SI20UMX5-06 FS,SI-P222-131# FF,SI-P222-131# SS,SI20TPC3A6-20 SS","SI20UEY5-10,SI20UMX5-06,SI-P222-131#,SI-P222-131#,SI20TPC3A6-20",80,,82,,18,,19,,49,1048,"HK1003 -Blackpoint D2 - Rev.0E DD30092021"
1-846,SI--BZL3-80,"(RFS) READY FOR SHIPMENT LIGHTING & SMALL POWER BZL",5121,"HK1003-Rev.0E-3",TT_FinMile,"55902",-,-,-,0,TK_NotStart,31/05/2022,,31/05/2022,,"SI--BZP4-12 FS","SI--BZP4-12","SI--BZL2-05 FS,SI--BZL4-25 FS","SI--BZL2-05,SI--BZL4-25",95,,95,,22,,22,,67,240,"HK1003 -Blackpoint D2 - Rev.0E DD30092021"
1-847,SI--BZL2-15,"BASIC DESIGN / SPECIFICATION / PLANTLAYOUT DWG / BOQ LIGHTING & SMALL POWER BZL",5121,"HK1003-Rev.0E-3",TT_Task,"55902",-,-,-,100,TK_Complete,04/02/2021,04/02/2021,28/04/2021,28/04/2021,"SI--3331-32 FS,SI-----1-03 FS,SI-----1-05 FS","SI--3331-32,SI-----1-03,SI-----1-05","SI--BZL2-75 FS,SI--BZL2-89 FS,SI--CYA2-87 FS,SI--CYA2-95 SS","SI--BZL2-75,SI--BZL2-89,SI--CYA2-87,SI--CYA2-95",26,26,38,38,6,6,9,9,4,,"HK1003 -Blackpoint D2 - Rev.0E DD30092021"
1-848,SI--BZL2-75,"RFQ LIGHTING & SMALL POWER BZL",5121,"HK1003-Rev.0E-3",TT_Mile,"55902",-,-,-,100,TK_Complete,13/05/2021,13/05/2021,13/05/2021,13/05/2021,"SI--BZL2-15 FS,SI--BZL2-89 FS","SI--BZL2-15,SI--BZL2-89","SI--BZL2-80 FS","SI--BZL2-80",40,40,40,40,9,9,9,9,12,,"HK1003 -Blackpoint D2 - Rev.0E DD30092021"
1-849,SI--BZL2-85,"CONTRACT INTO FORCE LIGHTING & SMALL POWER BZL",5121,"HK1003-Rev.0E-3",TT_Mile,"55902",-,-,-,0,TK_NotStart,23/10/2021,,23/10/2021,,"SI--BZL2-88 SS,SI--BZL2-80 FS","SI--BZL2-88,SI--BZL2-80","SI--BZL3-25 FS","SI--BZL3-25",64,,64,,14,,14,,35,240,"HK1003 -Blackpoint D2 - Rev.0E DD30092021"
1-850,SI20PAC6B15,"ERECTION CIRC. CW PUMP 20PAC",5121,"HK1003-Rev.0E-3",TT_Task,"55902",-,-,-,0,TK_NotStart,10/07/2022,,03/09/2022,,"SI--PAC2B05 FS,SI20URD5-45 FS,SI20PAC4B40 FS","SI--PAC2B05,SI20URD5-45,SI20PAC4B40","SI20BZP7-95 FS,SI20PAC6B40 SS,SI20BZL7E16 SS,SI20PAC6-06 FS,SI20PAB8-05 FS","SI20BZP7-95,SI20PAC6B40,SI20BZL7E16,SI20PAC6-06,SI20PAB8-05",101,,109,,23,,25,,73,384,"HK1003 -Blackpoint D2 - Rev.0E DD30092021"
1-851,SI20PAC6B40,"(RFP) READY FOR PIPE CONNECTION CIRC. CW PUMP 20PAC",5121,"HK1003-Rev.0E-3",TT_FinMile,"55902",-,-,-,0,TK_NotStart,23/07/2022,,23/07/2022,,"SI20PAC6B15 SS","SI20PAC6B15","SI20PAB6A16 FS,SI20PAB6A17 FS,SI20URA6-15 FS,SI20URA6-10 FS","SI20PAB6A16,SI20PAB6A17,SI20URA6-15,SI20URA6-10",103,,103,,24,,24,,74,384,"HK1003 -Blackpoint D2 - Rev.0E DD30092021"
1-852,SP--CJT2-85,"CONTRACT INTO FORCE SFC CUBICLES CJT",5121,"HK1003-Rev.0E-3",TT_Mile,"55902",-,-,-,100,TK_Complete,28/05/2021,28/05/2021,28/05/2021,28/05/2021,"SI--3332-76 SS,SP--CJT2-80 FS,SI--UBA2G85 FS","SI--3332-76,SP--CJT2-80,SI--UBA2G85","SP20CJT3-25 FS,SP--C--2-15 SS,SP--MKC2-85 FS","SP20CJT3-25,SP--C--2-15,SP--MKC2-85",42,42,42,42,10,10,10,10,14,,"HK1003 -Blackpoint D2 - Rev.0E DD30092021"
1-853,SI20GM-6H15,"ERECTION PIPES DRAINAGE SYSTEM 20GM BOILER/STEAM TURBINE",5121,"HK1003-Rev.0E-3",TT_Task,"55902",-,-,-,0,TK_NotStart,25/07/2022,,04/09/2022,,"SI--G--2-50 FS,SI20UMC5C55 FS,SI20GM-6E15 FS","SI--G--2-50,SI20UMC5C55,SI20GM-6E15","SI20-6-16# FF,SI20-6-16# SS,SI20GM-8B27 FS,SI20TPM20A6-20 SS,SI20TPM21A6-20 SS,SI20TPM23A6-20 SS","SI20-6-16#,SI20-6-16#,SI20GM-8B27,SI20TPM20A6-20,SI20TPM21A6-20,SI20TPM23A6-20",103,,109,,24,,25,,75,1712,"HK1003 -Blackpoint D2 - Rev.0E DD30092021"
1-854,SI20MB-6-20,"FURTHER ASSEMBLY / PIPING / INSULATION GT20",5121,"HK1003-Rev.0E-3",TT_Task,"55902",-,-,-,0,TK_NotStart,06/08/2022,,30/09/2022,,"SI20MB-6-10 FS","SI20MB-6-10","SI20MBA8-10 FS,SI20MPB7E81 FS,SI20MPB7E81 FF,SI20SAM8-10 FS,SI20MB-6-20# SS,SI20MB-7-20 FS,SI20---6A15 SS,SI20MBV6-55 FS,SI20MB-6-22 FS,SI20BZK7F26 FF,SI20MPB6E82 SS,SI20BZP7-100 FS","SI20MBA8-10,SI20MPB7E81,SI20MPB7E81,SI20SAM8-10,SI20MB-6-20#,SI20MB-7-20,SI20---6A15,SI20MBV6-55,SI20MB-6-22,SI20BZK7F26,SI20MPB6E82,SI20BZP7-100",105,,112,,24,,26,,76,168,"HK1003 -Blackpoint D2 - Rev.0E DD30092021"
1-855,SI20MBA6-35,"PRELIMINARY ALIGNMENT / COUPLING OF SHAFT GT20",5121,"HK1003-Rev.0E-3",TT_Task,"55902",-,-,-,0,TK_NotStart,27/08/2022,,09/09/2022,,"SI20MB-6-25 FS,SI20MBA6-16 FS,SI20MB-6-04 FS,SI20MBR6-47 FS","SI20MB-6-25,SI20MBA6-16,SI20MB-6-04,SI20MBR6-47","SI20MKA6-35 SS,SI20MKC7-16 FS,SI20MBV6-55 FS,SI20MBR6-35 FS,SI20MKA6-34 FS,SI20MAV6-55 FS,SI20MAX6-15 FS,SI20MPB6E83 FS","SI20MKA6-35,SI20MKC7-16,SI20MBV6-55,SI20MBR6-35,SI20MKA6-34,SI20MAV6-55,SI20MAX6-15,SI20MPB6E83",108,,109,,25,,25,,79,176,"HK1003 -Blackpoint D2 - Rev.0E DD30092021"
1-856,SI20MBA6-16,"LOWER, ALIGN & FIX GT20 / INST. INTERMEDIATE SHAFT",5121,"HK1003-Rev.0E-3",TT_Task,"55902",-,-,-,0,TK_NotStart,06/08/2022,,26/08/2022,,"SI20MB-6-10 FS","SI20MB-6-10","SI20MBP6-11 FS,SI20MPB6E82 FS,SI20MBA6-35 FS,SI20MBA6-40 FS,SI20MBX4-12 FS","SI20MBP6-11,SI20MPB6E82,SI20MBA6-35,SI20MBA6-40,SI20MBX4-12",105,,107,,24,,25,,77,176,"HK1003 -Blackpoint D2 - Rev.0E DD30092021"
1-857,SI20MB-6-22,"(RFE) STEEL STRUCTURE GT FOR CABLE TRAYS GT20",5121,"HK1003-Rev.0E-3",TT_FinMile,"55902",-,-,-,0,TK_NotStart,30/09/2022,,30/09/2022,,"SI20MB-6-20 FS","SI20MB-6-20","SI20BZP7-140 FS,SI20C--7B15 FS,SI20BZP7-100 FS","SI20BZP7-140,SI20C--7B15,SI20BZP7-100",112,,112,,26,,26,,82,168,"HK1003 -Blackpoint D2 - Rev.0E DD30092021"
1-858,SI20BZK7F26,"CABLING (E AND I&C CABLES) GT20",5121,"HK1003-Rev.0E-3",TT_Task,"55902",-,-,-,0,TK_NotStart,08/01/2023,,18/02/2023,,"SI20BZK7-25 FS,SI20BZP7-140 FS,SI20BZK4-41 FS,SI--B--2-68 FS,SI20BZP7-100 FS,SI20BZK7A26 FF,SI--B--7-55 FS,SI20MB-6-20 FF,SI20MBL7-25 FS,SI20BZK7-25 SS,SI--B--2-93 FS,SI--BZK4-40 FS","SI20BZK7-25,SI20BZP7-140,SI20BZK4-41,SI--B--2-68,SI20BZP7-100,SI20BZK7A26,SI--B--7-55,SI20MB-6-20,SI20MBL7-25,SI20BZK7-25,SI--B--2-93,SI--BZK4-40","SI20MBA8D10 FS,SI20SAM8-29 FS,SI20MBH8-10 FS,SI20SGJ6A15 FF,SI20MB-6-20# FF,SI20MBP8-10 FS,SI20MBX8-10 FS,SI20MBV8-10 FS,SI20MB-7-15 FF,SI20MBA8-10 FS,SI20UMC5D50 FS,SI20MBA8A10 FS,SI20MBL8-10 FS,SI20MBR8-26 FS,SI20CYQ8-10 FS,SI20MBX8E10 FS,SI20MBA8B10 FS,SI20MBA8-25 FS,SI20CYE8-10 FS,SI--2226-55 FF,SI20MBA8-10 FF,SI20MBA8D10 FF,SI20MBA8A10 FF,SI20MBA8B10 FF,SI20MBH8-10 FF,SI20MBL8-10 FF,SI20MBP8-10 FF,SI20MBR8-26 FF,SI20MBV8-10 FF,SI20MBX8E10 FF,SI20MBX8-10 FF,SI20MKF8-11 FS,SI20MKG8-26 FS,SI20MKQ8-25 FS,SI20MKW8-10 FS,SI20SGJ8-21 FS,SI20BZK7D10# FF,SI20BZK7D10# SS,SI20CPA8-10 FS","SI20MBA8D10,SI20SAM8-29,SI20MBH8-10,SI20SGJ6A15,SI20MB-6-20#,SI20MBP8-10,SI20MBX8-10,SI20MBV8-10,SI20MB-7-15,SI20MBA8-10,SI20UMC5D50,SI20MBA8A10,SI20MBL8-10,SI20MBR8-26,SI20CYQ8-10,SI20MBX8E10,SI20MBA8B10,SI20MBA8-25,SI20CYE8-10,SI--2226-55,SI20MBA8-10,SI20MBA8D10,SI20MBA8A10,SI20MBA8B10,SI20MBH8-10,SI20MBL8-10,SI20MBP8-10,SI20MBR8-26,SI20MBV8-10,SI20MBX8E10,SI20MBX8-10,SI20MKF8-11,SI20MKG8-26,SI20MKQ8-25,SI20MKW8-10,SI20SGJ8-21,SI20BZK7D10#,SI20BZK7D10#,SI20CPA8-10",127,,133,,29,,31,,88,328,"HK1003 -Blackpoint D2 - Rev.0E DD30092021"
1-859,SI--BFF2-85,"CONTRACT INTO FORCE LV SWITCHGEAR FOR HRSG BFF/BMF",5121,"HK1003-Rev.0E-3",TT_Mile,"55902",-,-,-,100,TK_Complete,30/07/2021,30/07/2021,30/07/2021,30/07/2021,"SI--BFF2-80 FS,SI20BFA2-85 FS","SI--BFF2-80,SI20BFA2-85","SI20BFC2Z85 FS,SI--BFF3-25 FS,SI20UBA3L25 FS,SI20BFF3-25 FS","SI20BFC2Z85,SI--BFF3-25,SI20UBA3L25,SI20BFF3-25",51,51,51,51,12,12,12,12,23,,"HK1003 -Blackpoint D2 - Rev.0E DD30092021"
1-860,SI--C--2C50,"(ICBB2) PRELIMINARY MEASUREMENT LIST, SIGNAL LIST AND BB INTERFACE SHEETS",5121,"HK1003-Rev.0E-3",TT_Mile,"55902",-,-,-,100,TK_Complete,30/07/2021,30/07/2021,30/07/2021,30/07/2021,"SI--C--2B81 SS,SI--C--2-10 SS,SI--P--2-10 FS,SI--L--2-10 FS,SI--G--2-10 SS,SI-----1-03 SS,SI20TPE4A2-10 FS,SI20TPE5A2-10 FS,SI20TPE3A2-10 FS,SI20TPE2A2-10 FS,SI20TPE6A2-10 FS,SI20TPE6II2-10 FS,SI--B--2A55 FS","SI--C--2B81,SI--C--2-10,SI--P--2-10,SI--L--2-10,SI--G--2-10,SI-----1-03,SI20TPE4A2-10,SI20TPE5A2-10,SI20TPE3A2-10,SI20TPE2A2-10,SI20TPE6A2-10,SI20TPE6II2-10,SI--B--2A55","SI--C--3E26 SS,SI--CP-3-25 FS,SI--C--2C55 FS,SI--C--2-40 FS,SI--BZK2-90 FS,SP20CJP3A25 FS","SI--C--3E26,SI--CP-3-25,SI--C--2C55,SI--C--2-40,SI--BZK2-90,SP20CJP3A25",51,51,51,51,12,12,12,12,23,,"HK1003 -Blackpoint D2 - Rev.0E DD30092021"
1-861,SI20LCL7A15,"ELECTRICAL ERECTION / VALVES STEAM GENERATOR DRAINS 20LCL",5121,"HK1003-Rev.0E-3",TT_Task,"55902",-,-,-,0,TK_NotStart,16/02/2023,,01/03/2023,,"SI20LCL6A45 FF,SI20BZP7D18 FS,SI20BZP7D19 FS,SI20BZP7-5 FS,SI20BZP7-196 FS,SI20BZP7-174 FS,SI20UMY6M10 FS,SI20UMY6M11 FS,SI20UMY6M12 FS,SI--2227-68 FS,SI--BZP2-05 FS,SI--PEE7-20 FS,SI--BZP4B40 FS","SI20LCL6A45,SI20BZP7D18,SI20BZP7D19,SI20BZP7-5,SI20BZP7-196,SI20BZP7-174,SI20UMY6M10,SI20UMY6M11,SI20UMY6M12,SI--2227-68,SI--BZP2-05,SI--PEE7-20,SI--BZP4B40","SI20HAA8E17 FS,SI20HAD8G10 FS,SI20HAD8E10 FS,SI20LBH8D10 FS,SI20HAD8F10 FS,SI20LCL8B10 FS,SI20LAC8B10 FS,SI20BZK7D11# FF,SI20BZK7D11# SS","SI20HAA8E17,SI20HAD8G10,SI20HAD8E10,SI20LBH8D10,SI20HAD8F10,SI20LCL8B10,SI20LAC8B10,SI20BZK7D11#,SI20BZK7D11#",132,,134,,30,,31,,91,400,"HK1003 -Blackpoint D2 - Rev.0E DD30092021"
1-862,SI20UMC5D50,"FIRE BARRIER FOR WALL PENETRATIONS IN 20UMC",5121,"HK1003-Rev.0E-3",TT_Task,"55902",-,-,-,0,TK_NotStart,26/02/2023,,08/04/2023,,"SI20UBA7-104 FS,SI20BZK7L25 FS,SI20BZP7-160 FS,SI20BZK7F26 FS,SI20BZK7A26 FS,SI20UBA4-42 FS,SI--B--2-68 FS,SI20UBA7-17 FS,SI20BZK7A27 FS,SI20BZK7-28 FS,SI20BZK7C33 FS,SI20BZK7E25 FS,SI20BZK7-25 FS,SI20BZK4-41 FS,SI--B--7-55 FS,SI20BZP7-110 FS,SI--B--2-93 FS","SI20UBA7-104,SI20BZK7L25,SI20BZP7-160,SI20BZK7F26,SI20BZK7A26,SI20UBA4-42,SI--B--2-68,SI20UBA7-17,SI20BZK7A27,SI20BZK7-28,SI20BZK7C33,SI20BZK7E25,SI20BZK7-25,SI20BZK4-41,SI--B--7-55,SI20BZP7-110,SI--B--2-93","SI20MB-9-15 FS","SI20MB-9-15",134,,140,,31,,32,,91,664,"HK1003 -Blackpoint D2 - Rev.0E DD30092021"
1-863,SI20UBF5-15,"CONSTRUCTION TRANSFORMER TABLE & WALLS 20UBF",5121,"HK1003-Rev.0E-3",TT_Task,"55902",-,-,-,0,TK_NotStart,12/01/2022,,08/03/2022,,"SI20UBF5-10 FS,SI20UBF5-19 FS,SI20UBE5-18.02 FS","SI20UBF5-10,SI20UBF5-19,SI20UBE5-18.02","SI20UBD5-10 FS,SI20UBF5E15 FS,SI20UBZ5-61 SS,SI20UBN5-5.00 SS","SI20UBD5-10,SI20UBF5E15,SI20UBZ5-61,SI20UBN5-5.00",75,,83,,17,,19,,45,952,"HK1003 -Blackpoint D2 - Rev.0E DD30092021"
1-864,SI20SGJ6-5,"ERECTION FF CO2 SYSTEM IN GT ENCLOSURE 20MPB SGJ",5121,"HK1003-Rev.0E-3",TT_Task,"55902",-,-,-,0,TK_NotStart,26/11/2022,,23/12/2022,,"SI20MB-6-15 SS,SI20SG-4-41 FS,SI20MPB6E82 FS,SI20SG-4-41 FF,SI-P222-65 FS","SI20MB-6-15,SI20SG-4-41,SI20MPB6E82,SI20SG-4-41,SI-P222-65","SI20SGJ8-20 FS,SI-P222-133 FS,SI-P222-173 FF,SI-P222-135 FS","SI20SGJ8-20,SI-P222-133,SI-P222-173,SI-P222-135",121,,124,,28,,29,,85,224,"HK1003 -Blackpoint D2 - Rev.0E DD30092021"
1-865,SI--ULA2-50,"PREPARATION FOUNDATION GROUNDING DWGS 20ULA",5121,"HK1003-Rev.0E-3",TT_Task,"55902",-,-,-,100,TK_Complete,19/06/2021,19/06/2021,02/07/2021,02/07/2021,"SI--ULA2-70 FF,SI--BAW2-02 FS","SI--ULA2-70,SI--BAW2-02","SI--ULA2-75 FS,SI--ULA2-71 FS","SI--ULA2-75,SI--ULA2-71",46,46,47,47,10,10,11,11,18,,"HK1003 -Blackpoint D2 - Rev.0E DD30092021"
1-866,SI20UBX5-15,"CONSTRUCTION FOUNDATION 20UBX/20UBG03",5121,"HK1003-Rev.0E-3",TT_Task,"55902",-,-,-,0,TK_NotStart,23/04/2022,,25/05/2022,,"SI20UBX5-10 SS,SI20UBX5-46 FF","SI20UBX5-10,SI20UBX5-46","SI20UBX5-45 FS","SI20UBX5-45",90,,94,,21,,22,,59,1000,"HK1003 -Blackpoint D2 - Rev.0E DD30092021"
1-867,SI--UBA2G15,"BASIC DESIGN / CONCEPTUAL DESIGN & SPECIFICATION ELECTRICAL MODULES UBA",5121,"HK1003-Rev.0E-3",TT_Task,"55902",-,-,-,100,TK_Complete,13/11/2020,13/11/2020,28/02/2021,28/02/2021,"SI20---2M10 FS,SI-----1-03 FS","SI20---2M10,SI-----1-03","SI--UBA2G75 FS","SI--UBA2G75",14,14,30,30,3,3,7,7,0,,"HK1003 -Blackpoint D2 - Rev.0E DD30092021"
1-868,SI20M--8-65,"UV TEST (BLACK OUT) GT20",5121,"HK1003-Rev.0E-3",TT_Task,"55902",-,-,-,0,TK_NotStart,16/06/2023,,22/06/2023,,"SI20MBV8H25 FS,SI20CPA8A25 FS","SI20MBV8H25,SI20CPA8A25","SI20MB-9-05 FS","SI20MB-9-05",149,,150,,34,,35,,98,8,"HK1003 -Blackpoint D2 - Rev.0E DD30092021"
1-869,SI20MKA6-20,"GENERATOR READY FOR PRE-ASSEMBLING PGB-PIPING",5121,"HK1003-Rev.0E-3",TT_Mile,"55902",-,-,-,0,TK_NotStart,10/09/2022,,10/09/2022,,"SI20MKA6E17 FS","SI20MKA6E17","SI20PGB6H17 FS","SI20PGB6H17",110,,110,,25,,25,,80,1608,"HK1003 -Blackpoint D2 - Rev.0E DD30092021"
1-870,SI20MA-6B16,"PLACING LP1-TURBINE SHAFT IN BEARINGS MA",5121,"HK1003-Rev.0E-3",TT_Task,"55902",-,-,-,0,TK_NotStart,23/09/2022,,24/09/2022,,"SI20MA-6B14 FS,SI20MA-5-27 FS,SI20MA-4-40 FS,SI20MA-6B00 FS,SI20MA-6B82 FS,SI20MA-6B83 FS","SI20MA-6B14,SI20MA-5-27,SI20MA-4-40,SI20MA-6B00,SI20MA-6B82,SI20MA-6B83","SI20MA-6B36 FS,SI20MA-6B35 FS","SI20MA-6B36,SI20MA-6B35",111,,112,,26,,26,,81,8,"HK1003 -Blackpoint D2 - Rev.0E DD30092021"
1-871,SI20MA-6B00,"CLEANING LP1-END WALLS AND PREPARATION OF ASSEMBLY STEAM TURBINE MA",5121,"HK1003-Rev.0E-3",TT_Task,"55902",-,-,-,0,TK_NotStart,23/07/2022,,26/07/2022,,"SI--LOG2-50 FS,SI--PEM6-20& FS,SI--PM-2-90 FS,SI--2222-32 SS,SI--3335-65 SS,SI20UMC5C45 FS,SI--2226-66 FS,SI20UMC5B35 FS,SP20MA-4C40 FS,SI20UMC5C55 FS","SI--LOG2-50,SI--PEM6-20&,SI--PM-2-90,SI--2222-32,SI--3335-65,SI20UMC5C45,SI--2226-66,SI20UMC5B35,SP20MA-4C40,SI20UMC5C55","SI20MA-6B15# SS,SI20MA-6C00 FS,SI20MA-6B02 FS,SI20MA-6B16 FS","SI20MA-6B15#,SI20MA-6C00,SI20MA-6B02,SI20MA-6B16",103,,103,,24,,24,,74,8,"HK1003 -Blackpoint D2 - Rev.0E DD30092021"
1-872,SI--UMC2E60,"(MS3) STEEL PLATFORMS COND. PIT. FINAL DIMENSIONS, LOADS AVAILABLE LOT1 20UMC",5121,"HK1003-Rev.0E-3",TT_FinMile,"55902",-,-,-,100,TK_Complete,29/03/2021,29/03/2021,29/03/2021,29/03/2021,"SI--M--2C20 FS","SI--M--2C20","SI--UMC2E70 FS,SI--UMC2E79 FS,SI--UMC2E70 FF,SI--UMC2E80 FS,SI--UMC2E81 FS","SI--UMC2E70,SI--UMC2E79,SI--UMC2E70,SI--UMC2E80,SI--UMC2E81",34,34,34,34,8,8,8,8,7,,"HK1003 -Blackpoint D2 - Rev.0E DD30092021"
1-873,SI20UBA4-50,"(ET4b) ELECTRICAL MODULES AT WORKSHOP READY FOR COMPONENT INSTALLATION ELECTRICAL MODULES 20UBA7910/20",5121,"HK1003-Rev.0E-3",TT_Mile,"55902",-,-,-,0,TK_NotStart,17/02/2022,,17/02/2022,,"SP--C--2-40 FS,SI20CHY4-10 FS","SP--C--2-40,SI20CHY4-10","SP20UBA3H55 FS","SP20UBA3H55",80,,80,,18,,18,,50,592,"HK1003 -Blackpoint D2 - Rev.0E DD30092021"
1-874,SI20UBA4B40,"(OTD-OS) ON SITE (ET4d) ELECTRICAL MODULES 20UBA7910/20",5121,"HK1003-Rev.0E-3",TT_FinMile,"55902",-,-,-,0,TK_NotStart,28/07/2022,,28/07/2022,,"SI--C--2B70 FS,SP20CJP3A11 SS,SP--C--2-40 SS,SI20UBA4H25 FS,SP--B--2-13 FS","SI--C--2B70,SP20CJP3A11,SP--C--2-40,SI20UBA4H25,SP--B--2-13","SI20UBA7-15 FS,SI20UBA7-26 FS","SI20UBA7-15,SI20UBA7-26",103,,103,,24,,24,,75,584,"HK1003 -Blackpoint D2 - Rev.0E DD30092021"
1-875,SI20BFT4-40,"(OTD-OS) ON SITE (ET7) LV-TRANSFORMERS 20BFT01/02",5121,"HK1003-Rev.0E-3",TT_FinMile,"55902",-,-,-,0,TK_NotStart,24/07/2022,,24/07/2022,,"SI20BFT4-25 FS","SI20BFT4-25","SI20BFT7-15 FS,SI--BHT7-20 FS,SI20BFT7-16 FS","SI20BFT7-15,SI--BHT7-20,SI20BFT7-16",103,,103,,24,,24,,75,816,"HK1003 -Blackpoint D2 - Rev.0E DD30092021"
1-876,SI--P--2-50,"(DF) MECH. ENGINEERING / PLANT LAYOUT P SYSTEMS",5121,"HK1003-Rev.0E-3",TT_FinMile,"55902",-,-,-,100,TK_Complete,11/02/2021,11/02/2021,11/02/2021,11/02/2021,"SI--P--2-30 FS","SI--P--2-30","SI--CKA2-00 FF,SI20PGB6H17 FS,SI20PAB6A15 FS,SI20PA-6H70 FS,SI20PAH6H15 FS,SI--2222-50 SS","SI--CKA2-00,SI20PGB6H17,SI20PAB6A15,SI20PA-6H70,SI20PAH6H15,SI--2222-50",27,27,27,27,6,6,6,6,4,,"HK1003 -Blackpoint D2 - Rev.0E DD30092021"
1-877,SI20CYQ8-25,"COLD COMMISSIONING GAS DETECTION SYSTEM 20CYQ",5121,"HK1003-Rev.0E-3",TT_Task,"55902",-,-,-,0,TK_NotStart,31/05/2023,,06/06/2023,,"SI20CYQ8-10 FS,SI20CYE8-10 FS,SI-PM-40 FS,SI20SCA8-17 SS","SI20CYQ8-10,SI20CYE8-10,SI-PM-40,SI20SCA8-17","SI20MB-9-15 FS","SI20MB-9-15",147,,148,,34,,34,,97,192,"HK1003 -Blackpoint D2 - Rev.0E DD30092021"
1-878,SI20SGY3A25,"DETAIL DESIGN / MANUFACTURING FIRE FIGHTING DETECTION SYSTEM SGY",5121,"HK1003-Rev.0E-3",TT_Task,"55902",-,-,-,11,TK_Active,10/09/2021,10/09/2021,03/03/2022,,"SI--SG-2-50 FS,SI--SG-2-18 FS,SI--SG-2-85 FS,SI--SG-2-50 SS,SI--SG-2-95 FS","SI--SG-2-50,SI--SG-2-18,SI--SG-2-85,SI--SG-2-50,SI--SG-2-95","SI20SGY3A70 FS,SI--SGY2-05 SS","SI20SGY3A70,SI--SGY2-05",57,57,82,,13,13,19,,29,1952,"HK1003 -Blackpoint D2 - Rev.0E DD30092021"
1-879,SI20PAH3-26,"MANUFACTURING & SHOP TEST CONDENSER TUBE CLEANING SYSTEM 20PAH",5121,"HK1003-Rev.0E-3",TT_Task,"55902",-,-,-,51,TK_Active,29/06/2021,29/06/2021,26/12/2021,,"SI20PAH3-25 FS,SI20PAH2-85 FS","SI20PAH3-25,SI20PAH2-85","SI20PAH3B70 FS,SI20PAH3B71 FS,SI20PAH2-05 SS","SI20PAH3B70,SI20PAH3B71,SI20PAH2-05",47,47,73,,11,11,17,,19,1016,"HK1003 -Blackpoint D2 - Rev.0E DD30092021"
1-880,SI20PAH4-40,"(OTD-OS) ARRIVAL AT SKIDDER CONDENSER TUBE CLEANING SYSTEM 20PAH  (BALL STRAINER)",5121,"HK1003-Rev.0E-3",TT_FinMile,"55902",-,-,-,0,TK_NotStart,15/02/2022,,15/02/2022,,"SI20PAH4-25 FS","SI20PAH4-25","SI20PAH6-15 FS,SI20---3B13 FF","SI20PAH6-15,SI20---3B13",80,,80,,18,,18,,49,952,"HK1003 -Blackpoint D2 - Rev.0E DD30092021"
1-881,SI20PGB7H15,"ELECTRICAL ERECTION PIPES / VALVES 20PGB",5121,"HK1003-Rev.0E-3",TT_Task,"55902",-,-,-,0,TK_NotStart,23/02/2023,,08/03/2023,,"SI20BZK7E25 FF,SI20PGB6H17 FF,SI20BZP7D18 FS,SI20BZP7D19 FS,SI20BZP7-5 FS,SI20BZP7-196 FS,SI20BZP7-174 FS,SI20UMY6M10 FS,SI20UMY6M11 FS,SI20UMY6M12 FS,SI--2227-68 FS,SI--BZP2-05 FS,SI--PEE7-20 FS,SI--BZP4B40 FS","SI20BZK7E25,SI20PGB6H17,SI20BZP7D18,SI20BZP7D19,SI20BZP7-5,SI20BZP7-196,SI20BZP7-174,SI20UMY6M10,SI20UMY6M11,SI20UMY6M12,SI--2227-68,SI--BZP2-05,SI--PEE7-20,SI--BZP4B40","SI20PAH8-25 FS,SI20PGB8-10 FS,SI20PCB8M10 FS,SI20PCB8M25 FS,SI20BZK7D11# FF,SI20BZK7D11# SS","SI20PAH8-25,SI20PGB8-10,SI20PCB8M10,SI20PCB8M25,SI20BZK7D11#,SI20BZK7D11#",133,,135,,31,,31,,91,336,"HK1003 -Blackpoint D2 - Rev.0E DD30092021"
1-882,SI20PCB7H15,"ELECTRICAL ERECTION / VALVES SERVICE COOL.WATER 20PCB",5121,"HK1003-Rev.0E-3",TT_Task,"55902",-,-,-,0,TK_NotStart,02/01/2023,,08/01/2023,,"SI20BZK7E25 FF,SI20PCB6H15 FS,SI20BZP7D18 FS,SI20BZP7D19 FS,SI20BZP7-5 FS,SI20BZP7-196 FS,SI20BZP7-174 FS,SI20UMY6M10 FS,SI20UMY6M11 FS,SI20UMY6M12 FS,SI--2227-68 FS,SI--BZP2-05 FS,SI--PEE7-20 FS,SI--BZP4B40 FS,SI20PCB6H16 FS","SI20BZK7E25,SI20PCB6H15,SI20BZP7D18,SI20BZP7D19,SI20BZP7-5,SI20BZP7-196,SI20BZP7-174,SI20UMY6M10,SI20UMY6M11,SI20UMY6M12,SI--2227-68,SI--BZP2-05,SI--PEE7-20,SI--BZP4B40,SI20PCB6H16","SI20PGB8-10 FS,SI20PAH8-25 FS,SI20PCB8M10 FS,SI20PCB8M25 FS,SI20BZK7D11# FF,SI20BZK7D11# SS","SI20PGB8-10,SI20PAH8-25,SI20PCB8M10,SI20PCB8M25,SI20BZK7D11#,SI20BZK7D11#",126,,127,,29,,29,,88,808,"HK1003 -Blackpoint D2 - Rev.0E DD30092021"
1-883,SI20PAB7A15,"ELECTRICAL ERECTION / VALVES 20PAB",5121,"HK1003-Rev.0E-3",TT_Task,"55902",-,-,-,0,TK_NotStart,17/11/2022,,14/12/2022,,"SI20BZK7A26 SS,SI20PAB6A16 FF,SI20PAB6A15 FF,SI20PAB6A17 FS,SI20BZP7D18 FS,SI20BZP7D19 FS,SI20BZP7-5 FS,SI20BZP7-196 FS,SI20BZP7-174 FS,SI20UMY6M10 FS,SI20UMY6M11 FS,SI20UMY6M12 FS,SI--2227-68 FS,SI--BZP2-05 FS,SI--PEE7-20 FS,SI--BZP4B40 FS","SI20BZK7A26,SI20PAB6A16,SI20PAB6A15,SI20PAB6A17,SI20BZP7D18,SI20BZP7D19,SI20BZP7-5,SI20BZP7-196,SI20BZP7-174,SI20UMY6M10,SI20UMY6M11,SI20UMY6M12,SI--2227-68,SI--BZP2-05,SI--PEE7-20,SI--BZP4B40","SI20PGB8-10 FS,SI20PAH8-25 FS,SI20PA-6H70 FF,SI20PCB8M10 FS,SI20PCB8M25 FS,SI20BZK7D11# FF,SI20BZK7D11# SS","SI20PGB8-10,SI20PAH8-25,SI20PA-6H70,SI20PCB8M10,SI20PCB8M25,SI20BZK7D11#,SI20BZK7D11#",119,,123,,27,,28,,85,1008,"HK1003 -Blackpoint D2 - Rev.0E DD30092021"
1-884,SI20MAL7A15,"ELECTRICAL ERECTION PIPES / VALVES MAL",5121,"HK1003-Rev.0E-3",TT_Task,"55902",-,-,-,0,TK_NotStart,14/12/2022,,27/12/2022,,"SI20BZK7C33 FF,SI20MAL6A45 FF,SI20BZP7D18 FS,SI20BZP7D19 FS,SI20BZP7-5 FS,SI20BZP7-196 FS,SI20BZP7-174 FS,SI20UMY6M10 FS,SI20UMY6M11 FS,SI20UMY6M12 FS,SI--2227-68 FS,SI--BZP2-05 FS,SI--PEE7-20 FS,SI--BZP4B40 FS","SI20BZK7C33,SI20MAL6A45,SI20BZP7D18,SI20BZP7D19,SI20BZP7-5,SI20BZP7-196,SI20BZP7-174,SI20UMY6M10,SI20UMY6M11,SI20UMY6M12,SI--2227-68,SI--BZP2-05,SI--PEE7-20,SI--BZP4B40","SI20MAL8-10 FS,SI20MAL8-10 FF","SI20MAL8-10,SI20MAL8-10",123,,125,,28,,29,,87,920,"HK1003 -Blackpoint D2 - Rev.0E DD30092021"
1-885,SI20LDK6B55,"LEAK TEST CONDENSATE POLISHING PLANT 20LD",5121,"HK1003-Rev.0E-3",TT_Task,"55902",-,-,-,0,TK_NotStart,09/02/2023,,15/02/2023,,"SI20LDK6B17 FS,SI20LDK6B16 FS,SI20LDK7H16 SS","SI20LDK6B17,SI20LDK6B16,SI20LDK7H16","SI20LD8B110 FS","SI20LD8B110",131,,132,,30,,30,,90,296,"HK1003 -Blackpoint D2 - Rev.0E DD30092021"
1-886,SI20LDK6B16,"ERECTION CONDENSATE POLISHING PLANT 20LD",5121,"HK1003-Rev.0E-3",TT_Task,"55902",-,-,-,0,TK_NotStart,05/08/2022,,02/11/2022,,"SI20UMC5C45 FS,SI--LD-2A05 FS,SI20LDK4B40 FS","SI20UMC5C45,SI--LD-2A05,SI20LDK4B40","SI20LDK6B17 FF,SI20LDK6A15 SS,SI20LDK6B55 FS","SI20LDK6B17,SI20LDK6A15,SI20LDK6B55",104,,117,,24,,27,,76,296,"HK1003 -Blackpoint D2 - Rev.0E DD30092021"
1-887,SI--L--2I45,"DESIGN DATA SHEETS SAFETY / CONTROL VALVES L SYSTEMS (on rack)",5121,"HK1003-Rev.0E-3",TT_Mile,"55902",-,-,-,100,TK_Complete,14/05/2021,14/05/2021,14/05/2021,14/05/2021,"SI--G--2I45 FS,SI--LCB2B20 SS,SI20PCB2B65 FS,SI20LCL2B87 FS,SI20LDK2B90 FS,SI--LAC2B20 FS,SI--LCA2B20 FS,SI--L--2-35 FS","SI--G--2I45,SI--LCB2B20,SI20PCB2B65,SI20LCL2B87,SI20LDK2B90,SI--LAC2B20,SI--LCA2B20,SI--L--2-35","SI--PM-2-60 FS","SI--PM-2-60",40,40,40,40,9,9,9,9,12,,"HK1003 -Blackpoint D2 - Rev.0E DD30092021"
1-888,SI--L--2-75,"DESIGN REVIEW INCL. SIL-STUDY L-SYSTEMS",5121,"HK1003-Rev.0E-3",TT_Task,"55902",-,-,-,100,TK_Complete,31/03/2021,31/03/2021,04/05/2021,04/05/2021,"SI--L--2-25 FF,SI--L--2-10 FS,SI--L--2-45 FS","SI--L--2-25,SI--L--2-10,SI--L--2-45","SI--L--2-65 FS,SI--L--2-77 FF,SI--P--2-75 SS,SI--L--2-70# FF","SI--L--2-65,SI--L--2-77,SI--P--2-75,SI--L--2-70#",34,34,39,39,8,8,9,9,7,,"HK1003 -Blackpoint D2 - Rev.0E DD30092021"
1-889,SI-----1-04,"START PRODUCTS (FULL ENGINEERING START) (no Hardware Order before NTP)",5121,"HK1003-Rev.0E-3",TT_Mile,"55902",-,-,-,100,TK_Complete,15/01/2021,15/01/2021,15/01/2021,15/01/2021,"SI20---2M10 SS,SI-----1-05 SS,SI-----1-03 SS,SP20MA-3-82 FS","SI20---2M10,SI-----1-05,SI-----1-03,SP20MA-3-82","SP20MB-3-25 SS,SP20MB-2-80 SS,SP--MKA2-86 SS,SP20MBL2-80 SS,SP--MB-2A80 SS,SP20MBP2A80 SS,SP--MBK2-80 SS,SP--MKC2-75 SS,SP20MBX2A80 SS,SP--CJT2-77 SS,SI--3331-35 FS,SP20MBV4A25 SS,SP20MB-3-25 FS,SP--MB-2A10 FS,SP20MA-3-25 SS,SP--B--2-12 SS,SP20MBL2-80 FS,SP--CYE2-70 SS,SP20MBL2-10 SS,SP--MB-2-10 SS,SI--M--2D00 SS,SP20MBR2A70 SS,SP--SG-2-100 SS,SP--MB-2-86 SS,SP20MAN3-26 SS,SP20MB-3F25 FS,SP--MB-2-85 FS,SP--MKA2B41 SS,SP20MAV3-25 SS,SP20MAX3-25 SS,SP20MBL2-05 SS,SP--MPB2-05 SS,SP20MAG3-25 SS,SI--C--2-05 SS,SI--M--2D20 SS,SP--SGJ2-10 SS,SP20MAD3-25 SS,SP--MB-3G75 SS,SP20MBR2-10 SS,SP--SGJ2-03 SS,SP20MBL2-70 SS,SI--M--2C00 FS,SP--MPB2-10 SS,SI--M--2C20 FS,SP20MAW3-25 SS,SP--CJJ3-25 SS,SP20MBR2A80 SS,SP20MBX4C25 SS,SI----P2J85 FS,SP--MPB2E55 FS,SP20MPB2A92 FS,SP--MB-2A81 SS,SP--MBK2-81 SS,SI--M--2A20 SS","SP20MB-3-25,SP20MB-2-80,SP--MKA2-86,SP20MBL2-80,SP--MB-2A80,SP20MBP2A80,SP--MBK2-80,SP--MKC2-75,SP20MBX2A80,SP--CJT2-77,SI--3331-35,SP20MBV4A25,SP20MB-3-25,SP--MB-2A10,SP20MA-3-25,SP--B--2-12,SP20MBL2-80,SP--CYE2-70,SP20MBL2-10,SP--MB-2-10,SI--M--2D00,SP20MBR2A70,SP--SG-2-100,SP--MB-2-86,SP20MAN3-26,SP20MB-3F25,SP--MB-2-85,SP--MKA2B41,SP20MAV3-25,SP20MAX3-25,SP20MBL2-05,SP--MPB2-05,SP20MAG3-25,SI--C--2-05,SI--M--2D20,SP--SGJ2-10,SP20MAD3-25,SP--MB-3G75,SP20MBR2-10,SP--SGJ2-03,SP20MBL2-70,SI--M--2C00,SP--MPB2-10,SI--M--2C20,SP20MAW3-25,SP--CJJ3-25,SP20MBR2A80,SP20MBX4C25,SI----P2J85,SP--MPB2E55,SP20MPB2A92,SP--MB-2A81,SP--MBK2-81,SI--M--2A20",23,23,23,23,5,5,5,5,2,,"HK1003 -Blackpoint D2 - Rev.0E DD30092021"
1-890,SI20PAB5-70,"(OTD-OS) FIRST PIPES ON SITE PIPING SYSTEM (OUTSIDE) 20PAB (FIRST DELIVERY)",5121,"HK1003-Rev.0E-3",TT_FinMile,"55902",-,-,-,100,TK_Complete,07/07/2021,07/07/2021,07/07/2021,07/07/2021,"SI20PAB3-30 FS,SI20PAB3-20 FS,SI20PAB4-55 FS","SI20PAB3-30,SI20PAB3-20,SI20PAB4-55","SI20PAB5-60 FS,SI20PAB5-85 FS,SI20UZ6A20 FS","SI20PAB5-60,SI20PAB5-85,SI20UZ6A20",48,48,48,48,11,11,11,11,21,,"HK1003 -Blackpoint D2 - Rev.0E DD30092021"
1-891,SI20PAB3-20,"FABRICATION / DETAIL DESIGN PIPING SYSTEM (OUTSIDE) 20PAB",5121,"HK1003-Rev.0E-3",TT_Task,"55902",-,-,-,100,TK_Complete,15/03/2021,15/03/2021,11/04/2021,11/04/2021,"SI--PAB2-24 FS,SI--5552-95 FS","SI--PAB2-24,SI--5552-95","SI20PAB3-30 SS,SI20PAB5-70 FS","SI20PAB3-30,SI20PAB5-70",32,32,36,36,7,7,8,8,6,,"HK1003 -Blackpoint D2 - Rev.0E DD30092021"
1-892,SI20MAW7H15,"ELECTRICAL ERECTION PIPES / VALVES MAW",5121,"HK1003-Rev.0E-3",TT_Task,"55902",-,-,-,0,TK_NotStart,18/03/2023,,24/03/2023,,"SI20BZK7C33 FF,SI20MAW6H45 FF,SI20BZP7D18 FS,SI20BZP7D19 FS,SI20BZP7-5 FS,SI20BZP7-196 FS,SI20BZP7-174 FS,SI20UMY6M10 FS,SI20UMY6M11 FS,SI20UMY6M12 FS,SI--2227-68 FS,SI--BZP2-05 FS,SI--PEE7-20 FS,SI--BZP4B40 FS","SI20BZK7C33,SI20MAW6H45,SI20BZP7D18,SI20BZP7D19,SI20BZP7-5,SI20BZP7-196,SI20BZP7-174,SI20UMY6M10,SI20UMY6M11,SI20UMY6M12,SI--2227-68,SI--BZP2-05,SI--PEE7-20,SI--BZP4B40","SI20MAW8-10 FS,SI20BZK7D11# FF,SI20BZK7D11# SS","SI20MAW8-10,SI20BZK7D11#,SI20BZK7D11#",137,,137,,31,,32,,93,528,"HK1003 -Blackpoint D2 - Rev.0E DD30092021"
1-893,SI20MAV7H15,"ELECTRICAL ERECTION / VALVES MAV",5121,"HK1003-Rev.0E-3",TT_Task,"55902",-,-,-,0,TK_NotStart,01/01/2023,,07/01/2023,,"SI20BZK7C33 FF,SI20MAV6H15 FS,SI20BZP7D18 FS,SI20BZP7D19 FS,SI20BZP7-5 FS,SI20BZP7-196 FS,SI20BZP7-174 FS,SI20UMY6M10 FS,SI20UMY6M11 FS,SI20UMY6M12 FS,SI--2227-68 FS,SI--BZP2-05 FS,SI--PEE7-20 FS,SI--BZP4B40 FS,SI20MAV6H16 FS","SI20BZK7C33,SI20MAV6H15,SI20BZP7D18,SI20BZP7D19,SI20BZP7-5,SI20BZP7-196,SI20BZP7-174,SI20UMY6M10,SI20UMY6M11,SI20UMY6M12,SI--2227-68,SI--BZP2-05,SI--PEE7-20,SI--BZP4B40,SI20MAV6H16","SI20MAV8-10 FS,SI20BZK7D11# FF,SI20BZK7D11# SS","SI20MAV8-10,SI20BZK7D11#,SI20BZK7D11#",126,,127,,29,,29,,88,776,"HK1003 -Blackpoint D2 - Rev.0E DD30092021"
1-894,SI20HA-6-55,"PRESSURE TEST HRSG20 COMPLETED",5121,"HK1003-Rev.0E-3",TT_FinMile,"55902",-,-,-,0,TK_NotStart,14/04/2023,,14/04/2023,,"SI20HA-6D18 FS,SI20HA-6-50& FS,SI20HB-6A17& FS","SI20HA-6D18,SI20HA-6-50&,SI20HB-6A17&","SI20HA-6-56 FF","SI20HA-6-56",140,,140,,32,,32,,95,0,"HK1003 -Blackpoint D2 - Rev.0E DD30092021"
1-895,SI20HA-6A45,"INSULATION HRSG / PIPES HRSG20 FOR CHEMICAL CLEANING",5121,"HK1003-Rev.0E-3",TT_Task,"55902",-,-,-,0,TK_NotStart,15/04/2023,,12/05/2023,,"SI20HA-6-56 FS,SI20HA-4B44 FS,SI20UMY6M70 FS","SI20HA-6-56,SI20HA-4B44,SI20UMY6M70","SI20--P6-75 FS,SI20HA-6-70 FS,SI20--P6-73 FF","SI20--P6-75,SI20HA-6-70,SI20--P6-73",141,,144,,32,,33,,95,0,"HK1003 -Blackpoint D2 - Rev.0E DD30092021"
1-896,SI20MKC7-16,"ERECTION MKC05 SLIP RING STRUCTURE MKC20",5121,"HK1003-Rev.0E-3",TT_Task,"55902",-,-,-,0,TK_NotStart,10/09/2022,,23/09/2022,,"SI20MKA6-35 FS,SI20MBA6-35 FS","SI20MKA6-35,SI20MBA6-35","SI20MKA8-10 FS,SI20BZK7A25 FS","SI20MKA8-10,SI20BZK7A25",110,,111,,25,,26,,80,936,"HK1003 -Blackpoint D2 - Rev.0E DD30092021"
1-897,SI20SGC8-65,"SIGNAL AND INTERFACE TESTS FF SPRAY DELUGE SYSTEM FOR 20BAT/ BBT SGC",5121,"HK1003-Rev.0E-3",TT_Task,"55902",-,-,-,0,TK_NotStart,18/03/2023,,24/03/2023,,"SI20SGC8-10 FS,SI20SGA8B27 FS","SI20SGC8-10,SI20SGA8B27","SI20SGC8-75 FS","SI20SGC8-75",137,,137,,31,,32,,93,16,"HK1003 -Blackpoint D2 - Rev.0E DD30092021"
1-898,SI20PAH2-75,"PREPARATION RFQ CONDENSER TUBE CLEANING SYSTEM 20PAH",5121,"HK1003-Rev.0E-3",TT_Task,"55902",-,-,-,100,TK_Complete,15/01/2021,15/01/2021,10/02/2021,10/02/2021,"SI--3331-32 FS,SI--PDB2B75 SS,SI--P--2-05 SS","SI--3331-32,SI--PDB2B75,SI--P--2-05","SI20PAH2-65 FS,SI20PAH2-80 FS","SI20PAH2-65,SI20PAH2-80",23,23,27,27,5,5,6,6,2,,"HK1003 -Blackpoint D2 - Rev.0E DD30092021"
1-899,SI20UBA3J25,"MANUFACTURING ELECTRICAL MODULES 20UBA7610/20",5121,"HK1003-Rev.0E-3",TT_Task,"55902",-,-,-,32,TK_Active,12/08/2021,12/08/2021,12/01/2022,,"SI--UBA2G85 FS,SI--UBA2G85 SS,SI--2222-30 FS","SI--UBA2G85,SI--UBA2G85,SI--2222-30","SI20UBA3J55 FS,SI20UBA3J20# SS,SI20UBA3J20# FS","SI20UBA3J55,SI20UBA3J20#,SI20UBA3J20#",53,53,75,,12,12,17,,25,800,"HK1003 -Blackpoint D2 - Rev.0E DD30092021"
1-900,SP20MAV3-25,"DESIGN / MANUFACTURING LUBE OIL MODULE 20MAV",5121,"HK1003-Rev.0E-3",TT_Task,"55902",-,-,-,26,TK_Active,29/07/2021,29/07/2021,01/04/2022,,"SP20MAV2-85 FS,SP20MA-2-81 SS,SI-----1-04 SS,SP20MA-3-25 SS","SP20MAV2-85,SP20MA-2-81,SI-----1-04,SP20MA-3-25","SP20MAV3-70 FS","SP20MAV3-70",51,51,86,,12,12,20,,23,552,"HK1003 -Blackpoint D2 - Rev.0E DD30092021"
1-901,SI20LD8B110,"(TOP-20LD) CONDENSATE POLISHING PLANT",5121,"HK1003-Rev.0E-3",TT_FinMile,"55902",-,-,-,0,TK_NotStart,01/03/2023,,01/03/2023,,"SI20LCW6H15 FS,SI20LAB7H15 FS,SI20LCW7H15 FS,SI20LAB6H15 FS,SI20LCA6A45 FS,SI20LCA6A16 FS,SI20LAB6H45 FS,SI20LDK6A15 SS,SI20LCA6A15 FS,SI20LCA7A15 FS,SI20LDK7H16 FS,SI20LDK6B55 FS,SI20PDB7B16 FS,SI20LDK6M15 FS,SI20LDK6A15 FS,SI20LDK6B17 FS","SI20LCW6H15,SI20LAB7H15,SI20LCW7H15,SI20LAB6H15,SI20LCA6A45,SI20LCA6A16,SI20LAB6H45,SI20LDK6A15,SI20LCA6A15,SI20LCA7A15,SI20LDK7H16,SI20LDK6B55,SI20PDB7B16,SI20LDK6M15,SI20LDK6A15,SI20LDK6B17","SI20LDK8B25 FS,SI20LDK8B10 FS,SI20TPM19A8-30 FS","SI20LDK8B25,SI20LDK8B10,SI20TPM19A8-30",134,,134,,31,,31,,92,184,"HK1003 -Blackpoint D2 - Rev.0E DD30092021"
1-902,SI--UMC2A70,"DETAIL DESIGN CONCRETE STRUCTURE TS FOUND. 20UMC",5121,"HK1003-Rev.0E-3",TT_Task,"55902",-,-,-,100,TK_Complete,06/02/2021,06/02/2021,21/04/2021,21/04/2021,"SI--UMC2A60 FS","SI--UMC2A60","SI--UMC2A50 FF,SI--UMC2A71 FS","SI--UMC2A50,SI--UMC2A71",27,27,37,37,6,6,8,8,4,,"HK1003 -Blackpoint D2 - Rev.0E DD30092021"
1-903,SI20UMC2B40,"BD - SUBMISSION & APPROVAL - AMENDMENT (incl. CEP MS3 Input) 20UMC",5121,"HK1003-Rev.0E-3",TT_Task,"55902",-,-,-,100,TK_Complete,11/06/2021,11/06/2021,29/07/2021,29/07/2021,"SI--UMC2B45 FF,SI--UMC2B45 FS,SI20UMC2B10 FS,SI20UMC2B35 SS,SI20UMC2B04 FS,SI-P221-20& FS,SI20UMC2B67 FS","SI--UMC2B45,SI--UMC2B45,SI20UMC2B10,SI20UMC2B35,SI20UMC2B04,SI-P221-20&,SI20UMC2B67","SI20UMC2B50 FF,SI20UPY2-25 SS,SI20UMC2B55 FS,SI--UMC2A84 FF","SI20UMC2B50,SI20UPY2-25,SI20UMC2B55,SI--UMC2A84",44,44,51,51,10,10,12,12,16,,"HK1003 -Blackpoint D2 - Rev.0E DD30092021"
1-904,SI--C--2-77,"I&C CONFIGURATION AND CONCEPTS READY",5121,"HK1003-Rev.0E-3",TT_FinMile,"55902",-,-,-,100,TK_Complete,25/03/2021,25/03/2021,25/03/2021,25/03/2021,"SI--C--2-10 FS","SI--C--2-10","SI--C--2B81 FS,SI--C--2-80 FF","SI--C--2B81,SI--C--2-80",33,33,33,33,7,7,7,7,6,,"HK1003 -Blackpoint D2 - Rev.0E DD30092021"
1-905,SI--M--2C20,"LAYOUT DOCUMENTS [external interfaces final]",5121,"HK1003-Rev.0E-3",TT_Mile,"55902",-,-,-,100,TK_Complete,20/03/2021,20/03/2021,20/03/2021,20/03/2021,"SI-----1-04 FS","SI-----1-04","SI--UBA2E60 FS,SI--UBA2F60 SS,SI---1P2A10 SS,SI--UMC2E60 FS,SI---4P2A10 SS,SI---3P2A10 SS,SI--UBA2-60 FS,SI20UBX2-10 FS,SI---5P2A10 SS,SI---2P2A10 SS,SI20UMC2B10 FS,SI--M--2C00 FS","SI--UBA2E60,SI--UBA2F60,SI---1P2A10,SI--UMC2E60,SI---4P2A10,SI---3P2A10,SI--UBA2-60,SI20UBX2-10,SI---5P2A10,SI---2P2A10,SI20UMC2B10,SI--M--2C00",33,33,33,33,7,7,7,7,6,,"HK1003 -Blackpoint D2 - Rev.0E DD30092021"
1-906,SI20UZA5-22,"(RFE) FOUNDATION FOR LIGHTING POLES UZA",5121,"HK1003-Rev.0E-3",TT_FinMile,"55902",-,-,-,0,TK_NotStart,09/09/2022,,09/09/2022,,"SI-UZA2-90 FS","SI-UZA2-90","SI20BZL7-15 FS","SI20BZL7-15",109,,109,,25,,25,,80,2864,"HK1003 -Blackpoint D2 - Rev.0E DD30092021"
1-907,SI20UZA5-23,"FINISHING WORKS UZA",5121,"HK1003-Rev.0E-3",TT_Task,"55902",-,-,-,0,TK_NotStart,06/03/2023,,04/05/2023,,"SI20UMC5C55 FS,SI20UZJ-99 FF,SI-UZA2-90 FS","SI20UMC5C55,SI20UZJ-99,SI-UZA2-90","SI-----1-09 FS","SI-----1-09",135,,143,,31,,33,,92,1928,"HK1003 -Blackpoint D2 - Rev.0E DD30092021"
1-908,SI--UBA2J60,"(MS3) STEEL STRUCTURE FINAL DIMENSIONS, LOADS AVAILABLE 20UBA8110/20",5121,"HK1003-Rev.0E-3",TT_FinMile,"55902",-,-,-,100,TK_Complete,11/05/2021,11/05/2021,11/05/2021,11/05/2021,"SI20UBA2C31 FS","SI20UBA2C31","SI--UBA2D70 FS,SI20UBA2B-38 FS","SI--UBA2D70,SI20UBA2B-38",40,40,40,40,9,9,9,9,12,,"HK1003 -Blackpoint D2 - Rev.0E DD30092021"
1-909,SI20LDK4B40,"(OTD-OS) ON SITE CONDENSATE POLISHING PLANT 20LD",5121,"HK1003-Rev.0E-3",TT_FinMile,"55902",-,-,-,0,TK_NotStart,21/07/2022,,21/07/2022,,"SI20LDK4B25 FS","SI20LDK4B25","SI20LDK6B16 FS","SI20LDK6B16",102,,102,,23,,23,,74,296,"HK1003 -Blackpoint D2 - Rev.0E DD30092021"
1-910,SI20LDK3B80,"(RFS) READY FOR SHIPMENT CONDENSATE POLISHING PLANT 20LD",5121,"HK1003-Rev.0E-3",TT_FinMile,"55902",-,-,-,0,TK_NotStart,26/05/2022,,26/05/2022,,"SI20LDK4B10 FS","SI20LDK4B10","SI--LD-2A05 FS,SI20LDK4B25 FS","SI--LD-2A05,SI20LDK4B25",94,,94,,22,,22,,66,296,"HK1003 -Blackpoint D2 - Rev.0E DD30092021"
1-911,SI20LDK4B25,"TRANSPORT CONDENSATE POLISHING PLANT 20LD",5121,"HK1003-Rev.0E-3",TT_Task,"55902",-,-,-,0,TK_NotStart,27/05/2022,,21/07/2022,,"SI20LDK3B80 FS","SI20LDK3B80","SI20LDK4B40 FS","SI20LDK4B40",94,,102,,22,,23,,66,296,"HK1003 -Blackpoint D2 - Rev.0E DD30092021"
1-912,SI20LDK3B32,"MANUFACTURING/SHOP TEST CONDENSATE POLISHING PLANT 20LD",5121,"HK1003-Rev.0E-3",TT_Task,"55902",-,-,-,23,TK_Active,28/07/2021,28/07/2021,28/04/2022,,"SI20LD-3-25 FS,SI--LDK2B85 FS","SI20LD-3-25,SI--LDK2B85","SI20LDK3B70 FS","SI20LDK3B70",51,51,90,,12,12,21,,23,296,"HK1003 -Blackpoint D2 - Rev.0E DD30092021"
1-913,SI--2222-80,"QUOTATION STAGE KKS PLANT LABELLING",5121,"HK1003-Rev.0E-3",TT_Task,"55902",-,-,-,0,TK_NotStart,14/12/2021,,24/01/2022,,"SI--2222-51 FS","SI--2222-51","SI--2222-85 FS","SI--2222-85",71,,77,,16,,18,,42,1880,"HK1003 -Blackpoint D2 - Rev.0E DD30092021"
1-914,SI20HB-4F25,"TRANSPORT OUTLET DUCT HRSG 20",5121,"HK1003-Rev.0E-3",TT_Task,"55902",-,-,-,0,TK_NotStart,08/02/2022,,14/03/2022,,"SI20HB-3F80 FS","SI20HB-3F80","SI20HB-4F40 FS","SI20HB-4F40",79,,84,,18,,19,,48,3000,"HK1003 -Blackpoint D2 - Rev.0E DD30092021"
1-915,SI20PAH6-10,"FEASIBLE PLACING CONDENSER CLEANING SCREEN",5121,"HK1003-Rev.0E-3",TT_Task,"55902",-,-,-,0,TK_NotStart,24/09/2022,,25/09/2022,,"SI20PAH2-05 FS,SI20PAH6-15 FS","SI20PAH2-05,SI20PAH6-15","SI20PAH6H15 FS","SI20PAH6H15",112,,112,,26,,26,,81,464,"HK1003 -Blackpoint D2 - Rev.0E DD30092021"
1-916,SI20HAA8F26,"COLD COMMISSIONING HRSG CONDENSATE RH SYS (FOR CHEM. CLEANING) 20HAA",5121,"HK1003-Rev.0E-3",TT_Task,"55902",-,-,-,0,TK_NotStart,29/04/2023,,12/05/2023,,"SI20HAA8E17 FS,SI20HAD8E25 SS,SI-PM-40 FS","SI20HAA8E17,SI20HAD8E25,SI-PM-40","SI20--P6-75 FS","SI20--P6-75",143,,144,,33,,33,,96,0,"HK1003 -Blackpoint D2 - Rev.0E DD30092021"
1-917,SI20MAX4-25,"TRANSPORT ST HYDRAULIC SYSTEM 20MAX",5121,"HK1003-Rev.0E-3",TT_Task,"55902",-,-,-,0,TK_NotStart,02/07/2022,,26/08/2022,,"SP20MAX3-80 FS","SP20MAX3-80","SI20MAX4-40 FS","SI20MAX4-40",100,,107,,23,,25,,72,1144,"HK1003 -Blackpoint D2 - Rev.0E DD30092021"
1-918,SI20MBL8-25,"COLD COMMISSIONING AIR INTAKE SYSTEM UNIT 20MBL",5121,"HK1003-Rev.0E-3",TT_Task,"55902",-,-,-,0,TK_NotStart,16/06/2023,,22/06/2023,,"SI20CPA8-25 FS,SI20MBL8-10 FS,SI-PM-40 FS,SI20B--8-50 FS,SI20B--8-52 FS,SI20MBA8-25 SS","SI20CPA8-25,SI20MBL8-10,SI-PM-40,SI20B--8-50,SI20B--8-52,SI20MBA8-25","SI20MB-8-25# SS,SI20MB-9-05 FS","SI20MB-8-25#,SI20MB-9-05",149,,150,,34,,35,,98,8,"HK1003 -Blackpoint D2 - Rev.0E DD30092021"
1-919,SI20BBA8-35,"FEEDER COMMISSIONING MV SWITCHGEAR 20BBB",5121,"HK1003-Rev.0E-3",TT_Task,"55902",-,-,-,0,TK_NotStart,12/04/2023,,30/05/2023,,"SI20B--8-50 FS,SI20BBA8-25 FS,SI20BBA8-49 FS","SI20B--8-50,SI20BBA8-25,SI20BBA8-49","SI20MA-9-05 SS,SI20LCA8M25 SS,SI20MKC8-76 SS,SI20M--9-70 FS,SI20MB-9-15 FS,SI20MKA9-35 FS,SI20LAC8B25 SS","SI20MA-9-05,SI20LCA8M25,SI20MKC8-76,SI20M--9-70,SI20MB-9-15,SI20MKA9-35,SI20LAC8B25",140,,147,,32,,34,,95,136,"HK1003 -Blackpoint D2 - Rev.0E DD30092021"
1-920,SI20BBA8-25,"COMMISSIONING MV SWITCHGEAR 20BBB",5121,"HK1003-Rev.0E-3",TT_Task,"55902",-,-,-,0,TK_NotStart,29/03/2023,,11/04/2023,,"SI20BBA8-10 FS,SI20CPD8-36 FS,SI20BFA8-25 FS,SI-PM-40 FS,SI20BBA8-38 FS,SI20TPI10A8-30 FS,SI20BBA8-36 FS,SI20B--8-52 FS","SI20BBA8-10,SI20CPD8-36,SI20BFA8-25,SI-PM-40,SI20BBA8-38,SI20TPI10A8-30,SI20BBA8-36,SI20B--8-52","SI--BFT8-25 FS,SI20BFC8-25 FS,SI20BBA8-35 FS","SI--BFT8-25,SI20BFC8-25,SI20BBA8-35",138,,140,,32,,32,,93,136,"HK1003 -Blackpoint D2 - Rev.0E DD30092021"
1-921,SI20MA-9-05,"1ST. TURNING GEAR ST",5121,"HK1003-Rev.0E-3",TT_Mile,"55902",-,-,-,0,TK_NotStart,23/06/2023,,23/06/2023,,"SI20PCB8M26 FS,SI20BBA8-35 SS,SI20MKA8-25 FS,SI20LDK8B25 FS,SI20MA-8-25 FS,SI20MKA8-10 SS,SI20PAA8-20 FS,SI20MA-6D45 FS,SI20BZL8B25 FS,SI20SGC8-37 FS,SI20MA-9-06& SS,SI20MA-8-05& SS,SI20MAJ8-25 FS,SI20MAY9-35 SS,SI20CPC8-27 FS,SI20PAD8-55 SS,SI20MB-9-05 FS,SI20MAW8-25 FS,SI20QFB8-25 FS","SI20PCB8M26,SI20BBA8-35,SI20MKA8-25,SI20LDK8B25,SI20MA-8-25,SI20MKA8-10,SI20PAA8-20,SI20MA-6D45,SI20BZL8B25,SI20SGC8-37,SI20MA-9-06&,SI20MA-8-05&,SI20MAJ8-25,SI20MAY9-35,SI20CPC8-27,SI20PAD8-55,SI20MB-9-05,SI20MAW8-25,SI20QFB8-25","SI20HA-9A45 FS,SI20M--9-70 FS,SI20M--8-67 FS","SI20HA-9A45,SI20M--9-70,SI20M--8-67",150,,150,,35,,35,,99,8,"HK1003 -Blackpoint D2 - Rev.0E DD30092021"
1-922,SI20M--8-67,"UNDER VOLTAGE (UV) TEST (BLACK OUT) ST",5121,"HK1003-Rev.0E-3",TT_Task,"55902",-,-,-,0,TK_NotStart,23/06/2023,,29/06/2023,,"SI20MAD8-25 FS,SI20MA-8-25 FS,SI20MAV8-25 FS,SI20MA-9-05 FS","SI20MAD8-25,SI20MA-8-25,SI20MAV8-25,SI20MA-9-05","SI20MB-9-15 FS","SI20MB-9-15",150,,151,,35,,35,,99,8,"HK1003 -Blackpoint D2 - Rev.0E DD30092021"
1-923,SI--UBA2H75,"(F) DETAIL DESIGN STEEL STRUCTURE WITH CONTRACTOR 20UBA8110/20",5121,"HK1003-Rev.0E-3",TT_FinMile,"55902",-,-,-,0,TK_NotStart,21/08/2022,,21/08/2022,,"SI--UBA2D70 FS,SI--UBA2-105 FS","SI--UBA2D70,SI--UBA2-105","SI20UBA3B27 FS","SI20UBA3B27",107,,107,,25,,25,,78,80,"HK1003 -Blackpoint D2 - Rev.0E DD30092021"
1-924,SI--UBA2D70,"DETAIL DESIGN STEEL STRUCTURE 20UBA8110/20",5121,"HK1003-Rev.0E-3",TT_Task,"55902",-,-,-,20,TK_Active,21/09/2021,21/09/2021,04/11/2021,,"SI20UBA2C31 FS,SI20UBA2I60 FS,SI--UBA2J60 FS,SI--UBA2B70 SS,SI20UBA2B-38 FS,SI--UBA2D78 FF","SI20UBA2C31,SI20UBA2I60,SI--UBA2J60,SI--UBA2B70,SI20UBA2B-38,SI--UBA2D78","SI--UBA2H75 FS,SI--UBA2-104 FS","SI--UBA2H75,SI--UBA2-104",59,59,65,,13,13,15,,30,1696,"HK1003 -Blackpoint D2 - Rev.0E DD30092021"
1-925,SI20UBA2I60,"(MS3) CONCRETE STRUCTURE FINAL DIMENSIONS, LOADS AVAILABLE 20UBA8110/20",5121,"HK1003-Rev.0E-3",TT_FinMile,"55902",-,-,-,100,TK_Complete,11/05/2021,11/05/2021,11/05/2021,11/05/2021,"SI20UBA2C31 FS","SI20UBA2C31","SI--UBA2D70 FS,SI20UBA2C61 FS,SI20UBA2C77 FS","SI--UBA2D70,SI20UBA2C61,SI20UBA2C77",40,40,40,40,9,9,9,9,12,,"HK1003 -Blackpoint D2 - Rev.0E DD30092021"
1-926,SI20UBA2C50,"PREPARATION FOUNDATION GROUNDING DWGS 20UBA8110/20",5121,"HK1003-Rev.0E-3",TT_Task,"55902",-,-,-,60,TK_Active,21/08/2021,21/08/2021,26/10/2021,,"SI20UBA2C61 FF","SI20UBA2C61","SI20UBA2G75 FS,SI--UBA2-101 FS","SI20UBA2G75,SI--UBA2-101",55,55,64,,12,12,15,,26,1144,"HK1003 -Blackpoint D2 - Rev.0E DD30092021"
1-927,SI20UBA2C61,"DETAIL DESIGN CONCRETE STRUCTURE 20UBA8110/20",5121,"HK1003-Rev.0E-3",TT_Task,"55902",-,-,-,100,TK_Complete,24/06/2021,24/06/2021,03/09/2021,03/09/2021,"SI20UBA2C77 FS,SI20UBA2C31 FS,SI20UBA2I60 FS","SI20UBA2C77,SI20UBA2C31,SI20UBA2I60","SI20UBA2C50 FF,SI20UBA2G75 FS,SI--UBA2-101 FS","SI20UBA2C50,SI20UBA2G75,SI--UBA2-101",46,46,56,56,10,10,13,13,19,,"HK1003 -Blackpoint D2 - Rev.0E DD30092021"
1-928,SI20--P6-75,"CHEMICAL CLEANING HRSG20 STEAM LINES TO ST",5121,"HK1003-Rev.0E-3",TT_Task,"55902",-,-,-,0,TK_NotStart,13/05/2023,,02/06/2023,,"SI20LBA8H25 FS,SI20LBA6H45 FS,SI20MA-6-14& SS,SI20HA-6A45 FS,SI20HB-8-25 FS,SI20LBB8H25 FS,SI20LBG6A45 FS,SI20GHD8A50 FS,SI--2222-38 SS,SI20LBA6J45 FS,SI20LAB6H45 FS,SI20ZT-6A00 FS,SI20LCA8M25 FS,SI20HAA8F26 FS,SI20LBB6J47 FS,SI20LBG6A47 FS,SI20LBH8D25 FS,SI20HA-6-56 FS,SI20QC-6H17 FS,SI20LBB6J49 FS,SI20GM-8F10 FS,SI20MA-6-16& FF,SI20LAC8B25 FS,SI20HAD8F25 FS,SI20HAD8E25 FS,SI20--P8-14& FS,SI20LCW6H15 FS,SI20LBG8A25 FS,SI20HA-6-70 FS,SI20LBA8J25 FS,SI20QC-6H15 FS,SI20CPC8A27 FS,SI20LCL8B35 FS,SI20ZTA6A00 FS,SI20LCA6A45 FS,SI20HAD8G25 FS,SI20--P6-76 FS,SI20ZTA6A0 FS,SI20LBA6H45 FF,SI20LBA6J72 FS,SI20--P6-78 FS,CL20UGX5-40 FS,SI20ZTB6A00 FS,SI20CPC8A25 SS,SI20GHC8H16 FS,SI20EKT6I15 FS,SI20BZL8-25 SS,SI20LDK8B25 FS,SI20TPM19A8-30 FS,SI20TPM28A8-30 FS,SI20TPM29A8-30 FS,SI-P222-146& FS","SI20LBA8H25,SI20LBA6H45,SI20MA-6-14&,SI20HA-6A45,SI20HB-8-25,SI20LBB8H25,SI20LBG6A45,SI20GHD8A50,SI--2222-38,SI20LBA6J45,SI20LAB6H45,SI20ZT-6A00,SI20LCA8M25,SI20HAA8F26,SI20LBB6J47,SI20LBG6A47,SI20LBH8D25,SI20HA-6-56,SI20QC-6H17,SI20LBB6J49,SI20GM-8F10,SI20MA-6-16&,SI20LAC8B25,SI20HAD8F25,SI20HAD8E25,SI20--P8-14&,SI20LCW6H15,SI20LBG8A25,SI20HA-6-70,SI20LBA8J25,SI20QC-6H15,SI20CPC8A27,SI20LCL8B35,SI20ZTA6A00,SI20LCA6A45,SI20HAD8G25,SI20--P6-76,SI20ZTA6A0,SI20LBA6H45,SI20LBA6J72,SI20--P6-78,CL20UGX5-40,SI20ZTB6A00,SI20CPC8A25,SI20GHC8H16,SI20EKT6I15,SI20BZL8-25,SI20LDK8B25,SI20TPM19A8-30,SI20TPM28A8-30,SI20TPM29A8-30,SI-P222-146&","SI20--P6-75# SS,SI20CPC8A30 FS,SI20HA-9A45 FS,SI20L--6A80 FS,SI20--P6-75# FF,SI20--P6-77# FS,SI20L--8-35 FS,SI20UGX8-45 FS,SI20HA-6A49 FS,SI20HA-8-35 FS,SI20LBA8-35 FS","SI20--P6-75#,SI20CPC8A30,SI20HA-9A45,SI20L--6A80,SI20--P6-75#,SI20--P6-77#,SI20L--8-35,SI20UGX8-45,SI20HA-6A49,SI20HA-8-35,SI20LBA8-35",145,,147,,33,,34,,97,0,"HK1003 -Blackpoint D2 - Rev.0E DD30092021"
1-929,SI20HA-9A45,"STEAM BLOW (ABO) HRSG / WD 20",5121,"HK1003-Rev.0E-3",TT_Task,"55902",-,-,-,0,TK_NotStart,03/07/2023,,09/07/2023,,"SI20MA-9-05 FS,SI20L--6A80 FS,SI20HA-9A45& FS,SI20--P6-75 FS,SI--HA-9-45& SS,SI20MB-9-10 SS,SI20PAD8-55 FS,SI20HA-8-65 FS,SI20MKA9-42 FS,SI20MAW8-25 FS,SI20UBA8G26 FS,SI20MAL8-25 FS,SI20CPC8A30 FS,SI20QC-8-25 FS,SI20ZTB6A00 FS,SI--BAW8-10 FS,SI-P222-127 FS","SI20MA-9-05,SI20L--6A80,SI20HA-9A45&,SI20--P6-75,SI--HA-9-45&,SI20MB-9-10,SI20PAD8-55,SI20HA-8-65,SI20MKA9-42,SI20MAW8-25,SI20UBA8G26,SI20MAL8-25,SI20CPC8A30,SI20QC-8-25,SI20ZTB6A00,SI--BAW8-10,SI-P222-127","SI20MA-8B25 FS,SI20L--9I80 FS,SI20MKA8-74 FS,SI-P222-152 FS","SI20MA-8B25,SI20L--9I80,SI20MKA8-74,SI-P222-152",152,,153,,35,,35,,99,0,"HK1003 -Blackpoint D2 - Rev.0E DD30092021"
1-930,SI20BAB7-15,"ERECTION CT / GROUNDING CUBICLE 20BAB",5121,"HK1003-Rev.0E-3",TT_Task,"55902",-,-,-,0,TK_NotStart,31/07/2022,,13/08/2022,,"SI20UMC5C55 FS,SI20MKA6-12 FS,SI20BAB4-25 FS,SI20BAB2-9 FS","SI20UMC5C55,SI20MKA6-12,SI20BAB4-25,SI20BAB2-9","SI20MKA8-10 FS","SI20MKA8-10",104,,106,,24,,24,,76,2176,"HK1003 -Blackpoint D2 - Rev.0E DD30092021"
1-931,SI20UBX5C10,"(HC) START ERECTION ROOF DECKING 20UBX",5121,"HK1003-Rev.0E-3",TT_Mile,"55902",-,-,-,0,TK_NotStart,02/09/2022,,02/09/2022,,"SI20UBX5B45 FS,SI20UBX3C25 FS,SI20UMC5C10 FS,SI20BAC7-15 FS","SI20UBX5B45,SI20UBX3C25,SI20UMC5C10,SI20BAC7-15","SI20UBX5C15 FS","SI20UBX5C15",108,,108,,25,,25,,80,520,"HK1003 -Blackpoint D2 - Rev.0E DD30092021"
1-932,SI20SGA8B27,"COLD COMMISSIONING FIRE FIGHTING MAIN RING AND OUTDOOR HYDRANTS SGA",5121,"HK1003-Rev.0E-3",TT_Task,"55902",-,-,-,0,TK_NotStart,12/03/2023,,17/03/2023,,"SI20SGA8B26 FS,SI-PM-40 FS,SI20SGA8B28 FS,SI20BFG8-50 FS","SI20SGA8B26,SI-PM-40,SI20SGA8B28,SI20BFG8-50","SI20SGA8-26 FS,SI20SGC8-65 FS,SI20SGC8-10 FS,SI20SGA8-10 FS,SI20SGC8E10 FS","SI20SGA8-26,SI20SGC8-65,SI20SGC8-10,SI20SGA8-10,SI20SGC8E10",136,,136,,31,,31,,92,16,"HK1003 -Blackpoint D2 - Rev.0E DD30092021"
1-933,SI--UR-2-35,"(C) BASIC DESIGN PLANT LAYOUT DWGS (UE) COOLING TOWER AVAILABLE",5121,"HK1003-Rev.0E-3",TT_FinMile,"55902",-,-,-,100,TK_Complete,16/04/2021,16/04/2021,16/04/2021,16/04/2021,"SI--UR-2-44 FS,SI-----1-01 FS,SI--URA2-76 FS","SI--UR-2-44,SI-----1-01,SI--URA2-76","SI--PM-2-30 FS,SI--URD2-77 FS,SI20UBY2-5 FS,SI20UBY2-41 FS,SI20UBY2-49 FS,SI20UZJ2-81 FS,SI--UR-2-45 FS,SI--PEM6-20& FS,SI--2222-141 FS,SI-P222-155 FS,SI-P222-158 FS,SI-P222-175 FS,SI20UBZ2-73 FS","SI--PM-2-30,SI--URD2-77,SI20UBY2-5,SI20UBY2-41,SI20UBY2-49,SI20UZJ2-81,SI--UR-2-45,SI--PEM6-20&,SI--2222-141,SI-P222-155,SI-P222-158,SI-P222-175,SI20UBZ2-73",36,36,36,36,8,8,8,8,8,,"HK1003 -Blackpoint D2 - Rev.0E DD30092021"
1-934,SI20MB-6-00,"PREPARATION FOUNDATION / INSTALL SUPPORT & BEAM GT20",5121,"HK1003-Rev.0E-3",TT_Task,"55902",-,-,-,0,TK_NotStart,16/07/2022,,29/07/2022,,"SI--LOG2-50 FS,SI--PEM6-20& FS,SI--PM-2-90 FS,SI--2222-32 SS,SI--3335-65 SS,SI20MBA4-27 FS,SI20MBA4-26 FF,SI--2226-66 FS,SI20MB-6-00& SS,SI---3S6-05& FS,SI20MB-6-15& FS,SI20UMC5A45 FS","SI--LOG2-50,SI--PEM6-20&,SI--PM-2-90,SI--2222-32,SI--3335-65,SI20MBA4-27,SI20MBA4-26,SI--2226-66,SI20MB-6-00&,SI---3S6-05&,SI20MB-6-15&,SI20UMC5A45","SI20MB-6-20# SS,SI20MB-4-25 FF,SI20MB-6-10 FS","SI20MB-6-20#,SI20MB-4-25,SI20MB-6-10",102,,103,,23,,24,,73,184,"HK1003 -Blackpoint D2 - Rev.0E DD30092021"
1-935,SI20MB-6-38,"INSULATION / COMPLETE ERECTION GT20 - BEFORE BURNERS INSTALLATION",5121,"HK1003-Rev.0E-3",TT_Task,"55902",-,-,-,0,TK_NotStart,01/10/2022,,04/11/2022,,"SI20MB-4G40 FS,SI20MB-7-20 SS","SI20MB-4G40,SI20MB-7-20","SI20MBA8-10 FS,SI20MB-6-20# FF,SI20MB-6-56 FF","SI20MBA8-10,SI20MB-6-20#,SI20MB-6-56",113,,117,,26,,27,,82,208,"HK1003 -Blackpoint D2 - Rev.0E DD30092021"
1-936,SI20MBV6-55,"OIL FLUSHING GT20 (INCL. PRESSURE TEST & RESTORATION)",5121,"HK1003-Rev.0E-3",TT_Task,"55902",-,-,-,0,TK_NotStart,24/02/2023,,16/03/2023,,"SI20MB-6-56 FS,SI20MB-6-15 FS,SI20MBV6-70 FS,SI20MB-7A15 FS,SI20BZK7A26 SS,SI20MBA6F15 FS,SP20MBX4C25 FS,SI20MB-6-20 FS,SI20MBA6-35 FS,SI20---6A15 FS,SI20MB-7-05 FS,SI20MBV6-55& SS,SI20MAV6-55 SS,SI20MA-6B84 FS,SI20UMX5-12 FS,SI20BZK7E27 FS,SI20E--7-10& FS","SI20MB-6-56,SI20MB-6-15,SI20MBV6-70,SI20MB-7A15,SI20BZK7A26,SI20MBA6F15,SP20MBX4C25,SI20MB-6-20,SI20MBA6-35,SI20---6A15,SI20MB-7-05,SI20MBV6-55&,SI20MAV6-55,SI20MA-6B84,SI20UMX5-12,SI20BZK7E27,SI20E--7-10&","SI20MBA8A10 FS,SI20MBA8B10 FS,SI20MBX8-10 FS,SI20MBA8D10 FS,SI20MBL8-10 FS,SI20MBP8-10 FS,SI20MBX8E10 FS,SI20MBH8-10 FS,SI20MKW6-57 FS,SI20MB-6-20# FF,SI20MBA8-10 FS,SI20MBV8-10 FS,SI20MB-6-58 FS","SI20MBA8A10,SI20MBA8B10,SI20MBX8-10,SI20MBA8D10,SI20MBL8-10,SI20MBP8-10,SI20MBX8E10,SI20MBH8-10,SI20MKW6-57,SI20MB-6-20#,SI20MBA8-10,SI20MBV8-10,SI20MB-6-58",133,,136,,31,,31,,91,8,"HK1003 -Blackpoint D2 - Rev.0E DD30092021"
1-937,SI20MB-6-25,"PRE-ALIGN AND FIX GT20",5121,"HK1003-Rev.0E-3",TT_Task,"55902",-,-,-,0,TK_NotStart,06/08/2022,,19/08/2022,,"SI20MB-6-10 FS,SI20MKA6-82 FF","SI20MB-6-10,SI20MKA6-82","SI20MB-7-05 FS,SI20MB-7-20 FS,SI20MBQ6H15 FF,SI20MBA6-35 FS,SI20MKA7-89 FS,SI20MKA7-42 FS,SI20MBR6-35 FS","SI20MB-7-05,SI20MB-7-20,SI20MBQ6H15,SI20MBA6-35,SI20MKA7-89,SI20MKA7-42,SI20MBR6-35",105,,106,,24,,24,,77,232,"HK1003 -Blackpoint D2 - Rev.0E DD30092021"
1-938,SI20UHX2-40,"(F) CONCRETE STRUCTURE DWGS ON SITE RELEASED FOR EXECUTION 20UHX",5121,"HK1003-Rev.0E-3",TT_FinMile,"55902",-,-,-,0,TK_NotStart,26/01/2022,,26/01/2022,,"SI20UHX2-15 FS,SI20UHX2-20 FS","SI20UHX2-15,SI20UHX2-20","SI20UHX5-05 FS","SI20UHX5-05",77,,77,,18,,18,,46,3056,"HK1003 -Blackpoint D2 - Rev.0E DD30092021"
1-939,SI20MBA8-25,"COLD COMMISSIONING GT20 INCLUDING COMBUSTION CHAMBER",5121,"HK1003-Rev.0E-3",TT_Task,"55902",-,-,-,0,TK_NotStart,28/04/2023,,22/06/2023,,"SI20GM-8B25 FS,SI20MBA8-10 FS,SI20BZK7F26 FS,SI20CPA8-25 FS,SI-PM-40 FS,SI20B--8-50 FS,SI20B--8-52 FS,SI20PGB8B25 SS","SI20GM-8B25,SI20MBA8-10,SI20BZK7F26,SI20CPA8-25,SI-PM-40,SI20B--8-50,SI20B--8-52,SI20PGB8B25","SI20MB-8-25# SS,SI20MB-9-05 FS,SI20MB-8-25# FF,SI20MB-8-25 FS,SI20MBA8E25 FS,SI20MBX8-25 FS,SI20MB-8E25 SS,SI20MBX8E25 SS,SI20MBV8H25 SS,SI20MB-8-25 FF,SI20SGY8A26 SS,SI20MBH8-25 FS,SI20MBR8-27 SS,SI20MBL8-25 SS,SI20MBA9-55 FS,SI20EK-8-25 SS,SI20MKA8-25 SS","SI20MB-8-25#,SI20MB-9-05,SI20MB-8-25#,SI20MB-8-25,SI20MBA8E25,SI20MBX8-25,SI20MB-8E25,SI20MBX8E25,SI20MBV8H25,SI20MB-8-25,SI20SGY8A26,SI20MBH8-25,SI20MBR8-27,SI20MBL8-25,SI20MBA9-55,SI20EK-8-25,SI20MKA8-25",142,,150,,33,,35,,96,8,"HK1003 -Blackpoint D2 - Rev.0E DD30092021"
1-940,SI--PAD2-86,"PRELIMINARY INPUT FOR MS2 COOLING TOWER PAD",5121,"HK1003-Rev.0E-3",TT_Mile,"55902",-,-,-,100,TK_Complete,20/12/2020,20/12/2020,20/12/2020,20/12/2020,"SI--PAD2-75 FS","SI--PAD2-75","SI--UR-2-40 FS,SI--PAD2-60 SS","SI--UR-2-40,SI--PAD2-60",20,20,20,20,4,4,4,4,1,,"HK1003 -Blackpoint D2 - Rev.0E DD30092021"
1-941,SI20SGC6-15,"ERECTION SPRAY DELUGE SYSTEM SGC FOR 20BAT 20SGC",5121,"HK1003-Rev.0E-3",TT_Task,"55902",-,-,-,0,TK_NotStart,21/11/2022,,25/12/2022,,"SI--SG-2-05 FS,SI20SG-4-41 FS,SI20BBT7-16 FS,SI20BAT7-15 FF,SI20SG-4-41 FF,SI20ACA7-70 FS,SI-P222-65 FS","SI--SG-2-05,SI20SG-4-41,SI20BBT7-16,SI20BAT7-15,SI20SG-4-41,SI20ACA7-70,SI-P222-65","SI20SGC8-10 FS,SI20SGC6J25 SS,SI-P222-133 FS,SI-P222-173 FF,SI-P222-135 FS","SI20SGC8-10,SI20SGC6J25,SI-P222-133,SI-P222-173,SI-P222-135",120,,125,,28,,29,,85,152,"HK1003 -Blackpoint D2 - Rev.0E DD30092021"
1-942,SI20SGJ8-20,"(TOP-20SGJ)  FF CO2 SYSTEM IN GT ENCLOSURE 20MPB SGJ",5121,"HK1003-Rev.0E-3",TT_FinMile,"55902",-,-,-,0,TK_NotStart,08/06/2023,,08/06/2023,,"SI20SGJ6-5 FS,SI20MBA8-23& FS,SI20SGY7A28 FS","SI20SGJ6-5,SI20MBA8-23&,SI20SGY7A28","SI20SGJ8-21 FS","SI20SGJ8-21",148,,148,,34,,34,,98,8,"HK1003 -Blackpoint D2 - Rev.0E DD30092021"
1-943,SI--SG-2-16,"BASIC DESIGN DWGS FIRE FIGHTING SYSTEMS SG- (incl. Design Review)",5121,"HK1003-Rev.0E-3",TT_Task,"55902",-,-,-,100,TK_Complete,20/04/2021,20/04/2021,23/07/2021,23/07/2021,"SI--SG-2-15 FS","SI--SG-2-15","SI--SG-2-18 FS","SI--SG-2-18",37,37,50,50,8,8,11,11,9,,"HK1003 -Blackpoint D2 - Rev.0E DD30092021"
1-944,SI--HA-2-70,"(DF) I&C HRSG",5121,"HK1003-Rev.0E-3",TT_FinMile,"55902",-,-,-,100,TK_Complete,22/04/2021,22/04/2021,22/04/2021,22/04/2021,"SI20CJF2-82 FS,SI20CJF2-15 FS,SI--HA-2-65 SS,SI--HA-2-59 FS","SI20CJF2-82,SI20CJF2-15,SI--HA-2-65,SI--HA-2-59","SI--L--2-70 FS,SI--2222-50 SS,SI--ZTA2-75 FS","SI--L--2-70,SI--2222-50,SI--ZTA2-75",37,37,37,37,8,8,8,8,9,,"HK1003 -Blackpoint D2 - Rev.0E DD30092021"
1-945,SI--HA-2-11,"P&ID'S, DATA SHEETS / LIFE TIME DESIGN CRITERIA FOR INQUIRY / ORDERING HRSG AVAILABLE",5121,"HK1003-Rev.0E-3",TT_Mile,"55902",-,-,-,100,TK_Complete,23/08/2020,23/08/2020,23/08/2020,23/08/2020,"SI--HA-2-81 FS,SI--HA-2-75 SS","SI--HA-2-81,SI--HA-2-75","SI--HA-2-05 FS","SI--HA-2-05",3,3,3,3,0,0,0,0,0,,"HK1003 -Blackpoint D2 - Rev.0E DD30092021"
1-946,SI--P--2-30,"REVISION P&ID'S AFTER 3D DRV P SYSTEMS",5121,"HK1003-Rev.0E-3",TT_Task,"55902",-,-,-,100,TK_Complete,15/01/2021,15/01/2021,11/02/2021,11/02/2021,"SI-----1-05 FS","SI-----1-05","SI--P--2-50 FS","SI--P--2-50",23,23,27,27,5,5,6,6,2,,"HK1003 -Blackpoint D2 - Rev.0E DD30092021"
1-947,SI20LCW6H15,"ERECTION, NDT, PT PIPES / VALVES 20LCW",5121,"HK1003-Rev.0E-3",TT_Task,"55902",-,-,-,0,TK_NotStart,10/11/2022,,18/01/2023,,"SI20--P6A00& SS,SI20MAG6A15 FF,SI20LCA6A15 FF,SI20UMC5C55 FS,SI20LCB6B41 FS,SI---1P6A05 FS","SI20--P6A00&,SI20MAG6A15,SI20LCA6A15,SI20UMC5C55,SI20LCB6B41,SI---1P6A05","SI20LAC8B10 FS,SI20LD8B110 FS,SI20LCW7H15 FF,SI20LCA8M10 FS,SI20--P6-75 FS,SI20-6-16# FF,SI20-6-16# SS,SI20LCW6H16 FS","SI20LAC8B10,SI20LD8B110,SI20LCW7H15,SI20LCA8M10,SI20--P6-75,SI20-6-16#,SI20-6-16#,SI20LCW6H16",118,,128,,27,,30,,85,184,"HK1003 -Blackpoint D2 - Rev.0E DD30092021"
1-948,SI20CPB8-10,"(TOP-20CP-ST) INTERFACE PANELS IN FUNCTION AREA ST",5121,"HK1003-Rev.0E-3",TT_FinMile,"55902",-,-,-,0,TK_NotStart,10/04/2023,,10/04/2023,,"SI20BZK7-28 FS,SI--9998-20& SS","SI20BZK7-28,SI--9998-20&","SI20CPB8-25 FS","SI20CPB8-25",140,,140,,32,,32,,94,32,"HK1003 -Blackpoint D2 - Rev.0E DD30092021"
1-949,SI20SGC8-37,"COLD COMMISSIONING FF SPRAY DELUGE SYSTEMS FOR TS AUXILIARY OIL SYSTEMS / H2 SYSTEMS SGC",5121,"HK1003-Rev.0E-3",TT_Task,"55902",-,-,-,0,TK_NotStart,18/04/2023,,01/05/2023,,"SI20BFG8-50 FS,SI20SGC8E10 FS,SI--BRU8-21 FS,SI20CPC8-27 FS,SI-PM-40 FS,SI20B--8-50 FS,SI-P222-66 FS,SI-P222-76 FS,SI-P222-75 FS,SI-P222-74 FS,SI-P222-73 FS,SI-P222-72 FS,SI-P222-70 FS,SI20CPB8A30 SS","SI20BFG8-50,SI20SGC8E10,SI--BRU8-21,SI20CPC8-27,SI-PM-40,SI20B--8-50,SI-P222-66,SI-P222-76,SI-P222-75,SI-P222-74,SI-P222-73,SI-P222-72,SI-P222-70,SI20CPB8A30","SI20MA-9-05 FS,SI20MKW8H25 FS,SI20MBX8E25 FS,SI20MAV8-25 FS,SI20MBV8H25 FS","SI20MA-9-05,SI20MKW8H25,SI20MBX8E25,SI20MAV8-25,SI20MBV8H25",141,,143,,33,,33,,95,88,"HK1003 -Blackpoint D2 - Rev.0E DD30092021"
1-950,SP20MKC3-80,"(RFS) READY FOR SHIPMENT SEE/SFC TRANSFORMER GT 20MKC / 20MBJ",5121,"HK1003-Rev.0E-3",TT_FinMile,"55902",-,-,-,0,TK_NotStart,29/04/2022,,29/04/2022,,"SP20MKC3-25 FS,SP20MKC4-10 FS","SP20MKC3-25,SP20MKC4-10","SI20MKC4-25 FS","SI20MKC4-25",90,,90,,21,,21,,60,640,"HK1003 -Blackpoint D2 - Rev.0E DD30092021"
1-951,SI--ZTB3A25,"DESIGN, PROC. PIPING / VALVES FOR STEAM BLOWING SYSTEM ZTB",5121,"HK1003-Rev.0E-3",TT_Task,"55902",-,-,-,49,TK_Active,27/05/2021,27/05/2021,09/02/2022,,"SI--ZTB2A85 FS","SI--ZTB2A85","SI--ZTB3B70 FS,SI--ZTB2A20 SS","SI--ZTB3B70,SI--ZTB2A20",42,42,79,,9,9,18,,14,2424,"HK1003 -Blackpoint D2 - Rev.0E DD30092021"
1-952,SI--ZTB2A20,"(DF) MATERIAL TAKE OFF FOR TEMPORARY PIPING AND VALVES",5121,"HK1003-Rev.0E-3",TT_FinMile,"55902",-,-,-,0,TK_NotStart,30/09/2021,,30/09/2021,,"SI--ZTB3A25 SS","SI--ZTB3A25","SI--ZTA2-35 SS,SI--ZTA2A20 SS","SI--ZTA2-35,SI--ZTA2A20",60,,60,,14,,14,,30,3480,"HK1003 -Blackpoint D2 - Rev.0E DD30092021"
1-953,SI20M--9-60,"INITIAL STEAM ADMISSION TO ST 20",5121,"HK1003-Rev.0E-3",TT_Mile,"55902",-,-,-,0,TK_NotStart,01/08/2023,,01/08/2023,,"SI--BAW8B10 FS,SI20BZK7C33 FS,SI20SGA8-26 FS,SI20HSJ8-26 FS,SI20MKA8-74 FS,SI20M--9-55 FS,SI20MA-8-60& SS,SI--CYA8-70 FS","SI--BAW8B10,SI20BZK7C33,SI20SGA8-26,SI20HSJ8-26,SI20MKA8-74,SI20M--9-55,SI20MA-8-60&,SI--CYA8-70","SI20M--9-70 SS","SI20M--9-70",156,,156,,36,,36,,99,0,"HK1003 -Blackpoint D2 - Rev.0E DD30092021"
1-954,SI20M--9-10,"OPTIMIZING COMBINED CYCLE POWER PLANT",5121,"HK1003-Rev.0E-3",TT_Task,"55902",-,-,-,0,TK_NotStart,21/10/2023,,04/12/2023,,"SI20M--9-70 FS,SI20M--9-75 FS","SI20M--9-70,SI20M--9-75","SI20M--9-90 FS","SI20M--9-90",168,,174,,39,,40,,99,0,"HK1003 -Blackpoint D2 - Rev.0E DD30092021"
1-955,SI20M--9-50,"FIRST BYPASS OPERATION FOR ST 20",5121,"HK1003-Rev.0E-3",TT_Mile,"55902",-,-,-,0,TK_NotStart,25/07/2023,,25/07/2023,,"SI20L--9I80 FS,SI20MA-8B25 FS,SI20M--9-50& SS,SI20L--9I81 FS,SI20HSK-8B28 FS,SI20CPB8A30 FS,SI-P222-138 FS,SI20MAN8-25 FS","SI20L--9I80,SI20MA-8B25,SI20M--9-50&,SI20L--9I81,SI20HSK-8B28,SI20CPB8A30,SI-P222-138,SI20MAN8-25","SI20M--9-55 SS","SI20M--9-55",155,,155,,36,,36,,99,0,"HK1003 -Blackpoint D2 - Rev.0E DD30092021"
1-956,SI20LBB8H25,"COLD COMMISSIONING REHEAT SYSTEM (FOR CHEM. CLEANING) 20LBB",5121,"HK1003-Rev.0E-3",TT_Task,"55902",-,-,-,0,TK_NotStart,18/04/2023,,01/05/2023,,"SI--2222-37 SS,SI20LBB8J11 FS,SI20BF-8-25 SS,SI-PM-40 FS,SI20LBA8J25 SS","SI--2222-37,SI20LBB8J11,SI20BF-8-25,SI-PM-40,SI20LBA8J25","SI20--P6-75 FS,SI--L--8A25# SS,SI--L--8A25# FF,SI20LBG8A25 FS","SI20--P6-75,SI--L--8A25#,SI--L--8A25#,SI20LBG8A25",141,,143,,33,,33,,95,56,"HK1003 -Blackpoint D2 - Rev.0E DD30092021"
1-957,SI--BAC2-75,"RFQ GEN. CIRCUIT BREAKER BAC",5121,"HK1003-Rev.0E-3",TT_Mile,"55902",-,-,-,100,TK_Complete,07/05/2021,07/05/2021,07/05/2021,07/05/2021,"SI--BAC2-15 FS,SI--3332-26 FS","SI--BAC2-15,SI--3332-26","SI--BAC2-80 FS","SI--BAC2-80",39,39,39,39,9,9,9,9,11,,"HK1003 -Blackpoint D2 - Rev.0E DD30092021"
1-958,SI--BAC2-80,"QUOTATION STAGE GEN. CIRCUIT BREAKER BAC",5121,"HK1003-Rev.0E-3",TT_Task,"55902",-,-,-,100,TK_Complete,07/05/2021,07/05/2021,15/07/2021,15/07/2021,"SI--BAC2-75 FS","SI--BAC2-75","SI--BAC2-85 FS","SI--BAC2-85",39,39,49,49,9,9,11,11,11,,"HK1003 -Blackpoint D2 - Rev.0E DD30092021"
1-959,SP--CJP2-38,"GT PREL. INPUT FOR I&C UNIT COORDINATION (incl. Final SREL)",5121,"HK1003-Rev.0E-3",TT_FinMile,"55902",-,-,-,0,TK_NotStart,05/11/2021,,05/11/2021,,"SP20CJP2-70 SS,SP--MB-2-86 SS","SP20CJP2-70,SP--MB-2-86","SI--C--2B83 FS,SI--C--2B70 FS,SI--C--2-40 FF","SI--C--2B83,SI--C--2B70,SI--C--2-40",65,,65,,15,,15,,37,1208,"HK1003 -Blackpoint D2 - Rev.0E DD30092021"
1-960,SI20MB-9-05,"1ST. TURNING GEAR GT20",5121,"HK1003-Rev.0E-3",TT_Mile,"55902",-,-,-,0,TK_NotStart,23/06/2023,,23/06/2023,,"SI20PGB8B25 FS,SI20SGY8A26 FS,SI20SAM8-26 FS,SI20MBR8-27 FS,SI20MBL8-25 FS,SI20BZL8E25 FS,SI20XKA8-25 FS,SI20MKW6-57 FS,SI20M--8-65 FS,SI20MB-8E25 FS,SI20SGJ8-21 FS,SI20EK-8-97 SS,SI20MKW8-10 SS,SI20MBA8-25 FS,SI20MKW8H25 FS,SI20GHC8H25 FS,SI20MKA8-25 FS,SI20PAD8-45 FS,SI20PAD8-55 SS,SI20SCA8-17 FS","SI20PGB8B25,SI20SGY8A26,SI20SAM8-26,SI20MBR8-27,SI20MBL8-25,SI20BZL8E25,SI20XKA8-25,SI20MKW6-57,SI20M--8-65,SI20MB-8E25,SI20SGJ8-21,SI20EK-8-97,SI20MKW8-10,SI20MBA8-25,SI20MKW8H25,SI20GHC8H25,SI20MKA8-25,SI20PAD8-45,SI20PAD8-55,SI20SCA8-17","SI20MBY9-35 FS,SI20MB-9-15 FS,SI20MA-9-05 FS","SI20MBY9-35,SI20MB-9-15,SI20MA-9-05",150,,150,,35,,35,,99,8,"HK1003 -Blackpoint D2 - Rev.0E DD30092021"
1-961,SI20QU-4-25,"TRANSPORT SAMPLING CONTAINER 20QU",5121,"HK1003-Rev.0E-3",TT_Task,"55902",-,-,-,0,TK_NotStart,09/09/2022,,03/11/2022,,"SI20QU-3-80 FS","SI20QU-3-80","SI20QU-4-40 FS","SI20QU-4-40",109,,117,,25,,27,,80,912,"HK1003 -Blackpoint D2 - Rev.0E DD30092021"
1-962,SI20CJ-8-25,"COMMISSIONING AUTOMATION SYSTEM 20UBA",5121,"HK1003-Rev.0E-3",TT_Task,"55902",-,-,-,0,TK_NotStart,21/02/2023,,06/03/2023,,"SI20CJ-8-10 FS,SI20BFA8-25 FS,SI20CR-8-25 SS,SI--9998-20& SS,SI20UBA7-17 FS,SI20UBA7-15 FS,SI20BZK7D25 FS,SI20UBA7-25 FS,SI20UBA7-104 FS,SI20CYA8A10 FS,SI-PM-40 FS,SI20TPI12A8-30 FS,SI20TPI13A8-30 FS,SI20TPI1A8-30 FS,SI20TPI4A8-30 FS,SI20TPI5A8-30 FS,SI20TPI3A8-30 FS,SI20TPI18A8-30 FS,SI20TPI2I8-30 FS,SI20TPI2II8-30 FS,SI20TPI2III8-30 FS,SI20TPI2IV8-30 FS","SI20CJ-8-10,SI20BFA8-25,SI20CR-8-25,SI--9998-20&,SI20UBA7-17,SI20UBA7-15,SI20BZK7D25,SI20UBA7-25,SI20UBA7-104,SI20CYA8A10,SI-PM-40,SI20TPI12A8-30,SI20TPI13A8-30,SI20TPI1A8-30,SI20TPI4A8-30,SI20TPI5A8-30,SI20TPI3A8-30,SI20TPI18A8-30,SI20TPI2I8-30,SI20TPI2II8-30,SI20TPI2III8-30,SI20TPI2IV8-30","SI20CPB8-25 FS,SI20CPC8-27 SS,SI20CPC8-25 FS,SI20CPA8-25 SS,SI20CPD8-36 SS","SI20CPB8-25,SI20CPC8-27,SI20CPC8-25,SI20CPA8-25,SI20CPD8-36",133,,135,,31,,31,,91,16,"HK1003 -Blackpoint D2 - Rev.0E DD30092021"
1-963,SI--SGM6-15,"ERECTION FIRE FIGHTING EXTINGUISHERS SGM",5121,"HK1003-Rev.0E-3",TT_Task,"55902",-,-,-,0,TK_NotStart,09/09/2022,,06/10/2022,,"SI20SG-4-41 FS,SI20BAT7-17 FS","SI20SG-4-41,SI20BAT7-17","SI20MB-9-15 FS,SI20MBA8-10 FS,SI20B--8-52 FS,SI-P222-133 FS,SI-P222-173 FS,SI-P222-135 FS","SI20MB-9-15,SI20MBA8-10,SI20B--8-52,SI-P222-133,SI-P222-173,SI-P222-135",109,,113,,25,,26,,80,512,"HK1003 -Blackpoint D2 - Rev.0E DD30092021"
1-964,SI--ZTB4A25,"TRANSPORT PIPING FOR STEAM BLOWING SYSTEM ZTB",5121,"HK1003-Rev.0E-3",TT_Task,"55902",-,-,-,0,TK_NotStart,07/01/2023,,03/03/2023,,"SI--ZTB3B80 FS","SI--ZTB3B80","SI--ZTB4A40 FS","SI--ZTB4A40",127,,134,,29,,31,,88,0,"HK1003 -Blackpoint D2 - Rev.0E DD30092021"
1-965,SI--C--2C55,"(ICBB3)  FINAL MEASUREMENT LIST, SIGNAL LIST AND BB INTERFACE SHEETS",5121,"HK1003-Rev.0E-3",TT_FinMile,"55902",-,-,-,100,TK_Complete,20/08/2021,20/08/2021,20/08/2021,20/08/2021,"SP20MBR2A70 FS,SI--P--2-65 FS,SI--L--2-65 FS,SI--G--2-65 FS,SI--P--2-78 FS,SI--L--2-78 FS,SI--L--2-28 FS,SI--P--2-70 FS,SI--L--2-70 FS,SI--C--2C50 FS,SI--B--2A55 FS,SI--B--2A56 FS,SI20BAB2-4 FS,SI--C--2-85 FS","SP20MBR2A70,SI--P--2-65,SI--L--2-65,SI--G--2-65,SI--P--2-78,SI--L--2-78,SI--L--2-28,SI--P--2-70,SI--L--2-70,SI--C--2C50,SI--B--2A55,SI--B--2A56,SI20BAB2-4,SI--C--2-85","SP--CJP2-41 FS,SP--CJJ2-39 FS,SP--CJP2-40 FS,SI--C--2E84 FS,SI--CP-3-25 FS,SI--C--2-50 FS,SI--C--3E27 FF,SP--B--2-60 FS,SI--3332-24 FF,SI--C--2D56 FS,SI--5552-64 FF,SI--C--2-55 FS,SI20CJ-3-21 FS,SP--CJJ3-25 FS,SI--C--2-40 FF,SI--BZK2-90 FS,SI--L--2-79 FS,SP20CJP3A25 FS,SI20CJ-3-54 FS,SI--CP-3-25 FF,SI20CJ-2-53 FS","SP--CJP2-41,SP--CJJ2-39,SP--CJP2-40,SI--C--2E84,SI--CP-3-25,SI--C--2-50,SI--C--3E27,SP--B--2-60,SI--3332-24,SI--C--2D56,SI--5552-64,SI--C--2-55,SI20CJ-3-21,SP--CJJ3-25,SI--C--2-40,SI--BZK2-90,SI--L--2-79,SP20CJP3A25,SI20CJ-3-54,SI--CP-3-25,SI20CJ-2-53",54,54,54,54,12,12,12,12,26,,"HK1003 -Blackpoint D2 - Rev.0E DD30092021"
1-966,SI20SCA2-75,"CONTRACT REVIEW / PREP. RFQ AIR COMPRESSOR SYSTEM SCA",5121,"HK1003-Rev.0E-3",TT_Task,"55902",-,-,-,100,TK_Complete,19/02/2021,19/02/2021,30/04/2021,30/04/2021,"SI--3331-32 FS,SI20SCA2-86 FS,SI20USC2-12 FS,SI-----1-05 FS","SI--3331-32,SI20SCA2-86,SI20USC2-12,SI-----1-05","SI20SCA2-66 FS,SI20SCA2-80 FS,SI20SCA2-60 FS","SI20SCA2-66,SI20SCA2-80,SI20SCA2-60",28,28,38,38,6,6,9,9,5,,"HK1003 -Blackpoint D2 - Rev.0E DD30092021"
1-967,SI20UMX5-45,"(RFE) FOUNDATION 20UMX-To be deleted",5121,"HK1003-Rev.0E-3",TT_FinMile,"55902",-,-,-,0,TK_NotStart,10/01/2022,,10/01/2022,,"SI20UMX5-15 FF","SI20UMX5-15","SI20MBR6-15 FS,SI20HB-6A17 FS","SI20MBR6-15,SI20HB-6A17",75,,75,,17,,17,,44,104,"HK1003 -Blackpoint D2 - Rev.0E DD30092021"
1-968,SI20UMX5-15,"CONSTRUCTION FOUNDATION 20UMX-To be deleted",5121,"HK1003-Rev.0E-3",TT_Task,"55902",-,-,-,0,TK_NotStart,21/12/2021,,10/01/2022,,"SI20UMX5-10 FS","SI20UMX5-10","SI20UMX5-45 FF","SI20UMX5-45",72,,75,,16,,17,,43,104,"HK1003 -Blackpoint D2 - Rev.0E DD30092021"
1-969,SI20SAM8-10,"(TOP-20SAM20) HVAC SYSTEM FOR GENERATOR FOUNDATION",5121,"HK1003-Rev.0E-3",TT_FinMile,"55902",-,-,-,0,TK_NotStart,25/05/2023,,25/05/2023,,"SI20MPB6E82 FS,SP20MPB4A43 SS,SI20MB-6-20 FS,SI--9998-22& FS","SI20MPB6E82,SP20MPB4A43,SI20MB-6-20,SI--9998-22&","SI20SAM8-26 FS","SI20SAM8-26",146,,146,,34,,34,,97,8,"HK1003 -Blackpoint D2 - Rev.0E DD30092021"
1-970,SP--MKC2-80,"ORDERING / NEGOTIATIONS SEE/SFC TRANSFORMER MKC / MBJ",5121,"HK1003-Rev.0E-3",TT_Task,"55902",-,-,-,100,TK_Complete,08/06/2021,08/06/2021,28/07/2021,28/07/2021,"SP--MKC2-75 FS","SP--MKC2-75","SP--MKC2-85 FS","SP--MKC2-85",44,44,51,51,10,10,12,12,16,,"HK1003 -Blackpoint D2 - Rev.0E DD30092021"
1-971,SP--MKC2-75,"PREPARATION OF SPEC. / ORDER DOCU. SEE/SFC TRANSFORMER MKC / MBJ",5121,"HK1003-Rev.0E-3",TT_Task,"55902",-,-,-,100,TK_Complete,13/04/2021,13/04/2021,07/06/2021,07/06/2021,"SI-----1-04 SS,SP--CJT2-77 SS,SP--CJT2-76 SS,SI--3331-35 FS,SI-----1-05 FS","SI-----1-04,SP--CJT2-77,SP--CJT2-76,SI--3331-35,SI-----1-05","SP--MKC2-80 FS","SP--MKC2-80",36,36,44,44,8,8,10,10,8,,"HK1003 -Blackpoint D2 - Rev.0E DD30092021"
1-972,SP--MKC2-85,"CONTRACT INTO FORCE SEE/SFC TRANSFORMER MKC / MBJ",5121,"HK1003-Rev.0E-3",TT_Mile,"55902",-,-,-,100,TK_Complete,29/07/2021,29/07/2021,29/07/2021,29/07/2021,"SP--MKC2-80 FS,SI--3332-76 SS,SP--CJT2-86 FS,SP--CJT2-85 FS","SP--MKC2-80,SI--3332-76,SP--CJT2-86,SP--CJT2-85","SP--C--2-15 SS,SP20MKC3-25 FS,SI20BAT2-86 FS","SP--C--2-15,SP20MKC3-25,SI20BAT2-86",51,51,51,51,12,12,12,12,23,,"HK1003 -Blackpoint D2 - Rev.0E DD30092021"
1-973,SI20BAW5A18,"ERECTION OUTDOOR EARTHING/LIGHTNING BOP AREA",5121,"HK1003-Rev.0E-3",TT_Task,"55902",-,-,-,0,TK_NotStart,16/07/2022,,23/10/2022,,"SI--BAW4-40 FS,SI--BAW2-05 FS,SI20BAW5C21 FF","SI--BAW4-40,SI--BAW2-05,SI20BAW5C21","SI--BAW8-10 FS,SI--BAW8A10 FS,SI20BAW5-15# FF,SI--BAW7-55 FS,SI20BAW5-15# SS,SI20BAW5C23 SS","SI--BAW8-10,SI--BAW8A10,SI20BAW5-15#,SI--BAW7-55,SI20BAW5-15#,SI20BAW5C23",102,,116,,23,,27,,73,1312,"HK1003 -Blackpoint D2 - Rev.0E DD30092021"
1-974,SI20GM-8B25,"COLD COMMISSIONING PLANT DRAINAGE SYSTEM GM FOR UBF",5121,"HK1003-Rev.0E-3",TT_Task,"55902",-,-,-,0,TK_NotStart,14/02/2023,,20/02/2023,,"SI20GM-8B10 FS,SI-PM-40 FS,SI20TPM25A8-30 FS,SI20TPC6A8-30 FS,SI20TPC8A8-30 FS,SI20TPC9A8-30 FS,SI20TPC10A8-30 FS,SI20BFA8-25 FS","SI20GM-8B10,SI-PM-40,SI20TPM25A8-30,SI20TPC6A8-30,SI20TPC8A8-30,SI20TPC9A8-30,SI20TPC10A8-30,SI20BFA8-25","SI20MBA8-25 FS,SI20SGC8-75 FF,SI20B--8-50 FS,SI20GM-8B27 FS","SI20MBA8-25,SI20SGC8-75,SI20B--8-50,SI20GM-8B27",132,,133,,30,,31,,90,296,"HK1003 -Blackpoint D2 - Rev.0E DD30092021"
1-975,SI20MAJ6-40,"(RFP) READY FOR PIPE CONNECTION VACUUM PUMP UNIT MAJ",5121,"HK1003-Rev.0E-3",TT_FinMile,"55902",-,-,-,0,TK_NotStart,09/07/2022,,09/07/2022,,"SI20MAJ6-15 SS","SI20MAJ6-15","SI20MAJ6A15 FS,SI20MAL6A15 FS","SI20MAJ6A15,SI20MAL6A15",101,,101,,23,,23,,73,1064,"HK1003 -Blackpoint D2 - Rev.0E DD30092021"
1-976,SI20MAJ8-10,"(TOP-20MAJ) EVACUATION SYSTEM",5121,"HK1003-Rev.0E-3",TT_FinMile,"55902",-,-,-,0,TK_NotStart,10/04/2023,,10/04/2023,,"SI20MA-6D70 FS,SI20MAA6A15 FS,SI20MA-6D45 FS,SI20MAJ7A15 FS,SI20MAJ6A15 FS,SI20BZK7-28 FS,SI20MAJ6-15 FS,SI20BZK7C33 FS,SI20MAJ7B15 FS,SI20MAD8-26& FS,SI20BZK7C34 FS","SI20MA-6D70,SI20MAA6A15,SI20MA-6D45,SI20MAJ7A15,SI20MAJ6A15,SI20BZK7-28,SI20MAJ6-15,SI20BZK7C33,SI20MAJ7B15,SI20MAD8-26&,SI20BZK7C34","SI20MAJ8-25 FS,SI20MA-8-25 FS","SI20MAJ8-25,SI20MA-8-25",140,,140,,32,,32,,94,32,"HK1003 -Blackpoint D2 - Rev.0E DD30092021"
1-977,SI20UTG5-76,"(RFE) FOUNDATION 20UTG07",5121,"HK1003-Rev.0E-3",TT_FinMile,"55902",-,-,-,0,TK_NotStart,31/05/2022,,31/05/2022,,"SI20UTG5-72 FS,SI20UTG5-77 FS,SI20UTG5-77.04 FS","SI20UTG5-72,SI20UTG5-77,SI20UTG5-77.04","SI20QJ-6B45 FS,SI20UTG2S-34 FS","SI20QJ-6B45,SI20UTG2S-34",95,,95,,22,,22,,67,2120,"HK1003 -Blackpoint D2 - Rev.0E DD30092021"
1-978,SI20HB-6E27,"REMAINING INTERNAL INSULATION FOR INLET DUCT HRSG20",5121,"HK1003-Rev.0E-3",TT_Task,"55902",-,-,-,0,TK_NotStart,19/06/2022,,09/07/2022,,"SI20HB-6E29 FS,SI20HB-4E40 FS,SI20HA-6D18 FS,SI20HB-6E33 FS","SI20HB-6E29,SI20HB-4E40,SI20HA-6D18,SI20HB-6E33","SI20HB-8-18 FS,SI20HB-8-18 FF","SI20HB-8-18,SI20HB-8-18",98,,101,,22,,23,,70,2400,"HK1003 -Blackpoint D2 - Rev.0E DD30092021"
1-979,SI--2222-82,"QUOTATION STAGE ERECTION CONTRACTOR (E and I&C)",5121,"HK1003-Rev.0E-3",TT_Task,"55902",-,-,-,100,TK_Complete,19/03/2021,19/03/2021,09/07/2021,09/07/2021,"SI--2222-63 FS","SI--2222-63","SI--2222-87 FS,SI--2222-136 FF","SI--2222-87,SI--2222-136",32,32,48,48,7,7,11,11,6,,"HK1003 -Blackpoint D2 - Rev.0E DD30092021"
1-980,SI--2222-63,"PREPARATION RFQ DOCUMENTS FOR ERECTION CONTRACTOR (E and I&C)",5121,"HK1003-Rev.0E-3",TT_Task,"55902",-,-,-,100,TK_Complete,15/01/2021,15/01/2021,18/03/2021,18/03/2021,"SI-----1-03 FS,SI-----1-05 FS","SI-----1-03,SI-----1-05","SI--2222-82 FS,SI--2222-136 FS","SI--2222-82,SI--2222-136",23,23,32,32,5,5,7,7,2,,"HK1003 -Blackpoint D2 - Rev.0E DD30092021"
1-981,SI--2222-87,"CONTRACT INTO FORCE ERECTION CONTRACTOR (E and I&C)",5121,"HK1003-Rev.0E-3",TT_Mile,"55902",-,-,-,0,TK_NotStart,27/11/2021,,27/11/2021,,"SI--2222-82 FS,SI--2222-136 FS,SI--2222-140 FS","SI--2222-82,SI--2222-136,SI--2222-140","SI--2227-67 FS","SI--2227-67",69,,69,,16,,16,,39,328,"HK1003 -Blackpoint D2 - Rev.0E DD30092021"
1-982,SI--BZP4-25,"TRANSPORT CABLE SUPPORT SYSTEM BZP (LOT 1)",5121,"HK1003-Rev.0E-3",TT_Task,"55902",-,-,-,0,TK_NotStart,23/02/2022,,19/04/2022,,"SI--BZP3-80 FS","SI--BZP3-80","SI--BZP4B40 FS","SI--BZP4B40",81,,89,,19,,20,,50,144,"HK1003 -Blackpoint D2 - Rev.0E DD30092021"
1-983,SP--MB-2A85,"CONTRACT INTO FORCE INTERCONNECTING PIPING MB-",5121,"HK1003-Rev.0E-3",TT_Mile,"55902",-,-,-,0,TK_NotStart,30/10/2021,,30/10/2021,,"SI--3332-76 SS,SP--MB-2A81 FS","SI--3332-76,SP--MB-2A81","SP20MB-3A25 FS","SP20MB-3A25",65,,65,,15,,15,,36,376,"HK1003 -Blackpoint D2 - Rev.0E DD30092021"
1-984,SI20M--9-85,"RELIABILITY RUN COMBINED CYCLE POWER PLANT",5121,"HK1003-Rev.0E-3",TT_Task,"55902",-,-,-,0,TK_NotStart,17/12/2023,,31/12/2023,,"SI20---9-85& SS,SI20---9-00# FS,SI20---9-90& FS,SI20M--9-90 FS","SI20---9-85&,SI20---9-00#,SI20---9-90&,SI20M--9-90","SI-----1-09 FS","SI-----1-09",176,,178,,41,,41,,99,0,"HK1003 -Blackpoint D2 - Rev.0E DD30092021"
1-985,SI20M--9-90,"PERFORMANCE TEST COMBINED CYCLE POWER PLANT",5121,"HK1003-Rev.0E-3",TT_Task,"55902",-,-,-,0,TK_NotStart,05/12/2023,,16/12/2023,,"SI20M--9-10 FS,SI20---9-75& SS","SI20M--9-10,SI20---9-75&","SI20M--9-85 FS,SI-P222-166 FS","SI20M--9-85,SI-P222-166",174,,176,,40,,41,,99,0,"HK1003 -Blackpoint D2 - Rev.0E DD30092021"
1-986,SI20XKA2-85,"CONTRACT INTO FORCE EMERGENCY DIESEL GEN.SET XKA & FUEL OIL TANK EG",5121,"HK1003-Rev.0E-3",TT_Mile,"55902",-,-,-,0,TK_NotStart,13/10/2021,,13/10/2021,,"SI20XKA2-80 FS","SI20XKA2-80","SI20XKA2-60 SS,SI20XKA3-25 FS,SI20UBN2-5 FS,SI20EGx3-5 FS,SI20EGx2-30 FS","SI20XKA2-60,SI20XKA3-25,SI20UBN2-5,SI20EGx3-5,SI20EGx2-30",62,,62,,14,,14,,33,520,"HK1003 -Blackpoint D2 - Rev.0E DD30092021"
1-987,SP--MB-2-12,"LIST OF CONTROL SETTINGS GT.-AUX. (SREL) (EIF)",5121,"HK1003-Rev.0E-3",TT_FinMile,"55902",-,-,-,100,TK_Complete,02/04/2021,02/04/2021,02/04/2021,02/04/2021,"SP--MB-2-86 FS","SP--MB-2-86","SP--MB-2G40 FS","SP--MB-2G40",34,34,34,34,8,8,8,8,7,,"HK1003 -Blackpoint D2 - Rev.0E DD30092021"
1-988,SI20UBX2C-50,"BASIC DESIGN CLADDING INCL. ARCHITECTUAL LAYOUT DWGS 10 - 20 UBX",5121,"HK1003-Rev.0E-3",TT_Task,"55902",-,-,-,0,TK_NotStart,22/04/2022,,12/05/2022,,"SI20UBX2-55 FF,SI--UB-2-35 FS","SI20UBX2-55,SI--UB-2-35","SI20UBX2C-55 FS,SI20UBX2C-65 FS","SI20UBX2C-55,SI20UBX2C-65",89,,92,,20,,21,,59,520,"HK1003 -Blackpoint D2 - Rev.0E DD30092021"
1-989,SI20MBV6-70,"PREPARATION FOR PIPE CLEANING SYSTEM (GT20)",5121,"HK1003-Rev.0E-3",TT_Task,"55902",-,-,-,0,TK_NotStart,26/11/2022,,16/12/2022,,"SI20MBA6F15 FF,SP20MBV4A25 FS,SI20MB-6-15 FS","SI20MBA6F15,SP20MBV4A25,SI20MB-6-15","SI20MBV8-10 FS,SI20MBV6-55 FS","SI20MBV8-10,SI20MBV6-55",121,,123,,28,,28,,85,560,"HK1003 -Blackpoint D2 - Rev.0E DD30092021"
1-990,SI20UEN2-70,"DETAIL DESIGN CONCRETE STRUCTURE 20UEN",5121,"HK1003-Rev.0E-3",TT_Task,"55902",-,-,-,100,TK_Complete,02/08/2021,02/08/2021,15/09/2021,15/09/2021,"SI20UEN2-71 FS,SI--UEN2-60 FS","SI20UEN2-71,SI--UEN2-60","SI--UEN2-50 FF,SI--UEN2A75 FS,SI20UEN2-69 FF","SI--UEN2-50,SI--UEN2A75,SI20UEN2-69",52,52,58,58,12,12,13,13,24,,"HK1003 -Blackpoint D2 - Rev.0E DD30092021"
1-991,SI--UEN2-50,"PREPARATION FOUNDATION GROUNDING DWGS 20UEN",5121,"HK1003-Rev.0E-3",TT_Task,"55902",-,-,-,100,TK_Complete,02/09/2021,02/09/2021,15/09/2021,15/09/2021,"SI20UEN2-70 FF,SI--UEN2-60 FS","SI20UEN2-70,SI--UEN2-60","SI--UEN2A75 FS,SI20UEN2-69 FF","SI--UEN2A75,SI20UEN2-69",56,56,58,58,13,13,13,13,28,,"HK1003 -Blackpoint D2 - Rev.0E DD30092021"
1-992,SI--HA-3E26,"BASIC / DETAIL DESIGN / ORDERING / DELIVERY / MANUFACTURING PIPING HRSG20_1st part (LB CARBON STEEL)",5121,"HK1003-Rev.0E-3",TT_Task,"55902",-,-,-,73,TK_Active,28/01/2021,28/01/2021,30/12/2021,,"SI--HA-2A40 FS,SI--HA-2-10 FF,SI--HA-2-85 FS","SI--HA-2A40,SI--HA-2-10,SI--HA-2-85","SI20HA-3B72 FS,SI20HA-3-15# FF,SI20HA-3-15# SS,SI20HA-3E84 SS","SI20HA-3B72,SI20HA-3-15#,SI20HA-3-15#,SI20HA-3E84",25,25,73,,6,6,17,,3,544,"HK1003 -Blackpoint D2 - Rev.0E DD30092021"
1-993,SI--PAC2B85,"CONTRACT INTO FORCE CIRC. CW PUMP PAC",5121,"HK1003-Rev.0E-3",TT_Mile,"55902",-,-,-,100,TK_Complete,09/04/2021,09/04/2021,09/04/2021,09/04/2021,"SI--PAC2B45 SS,SI--PAC2B80 FS,SI--3332-76 FS","SI--PAC2B45,SI--PAC2B80,SI--3332-76","SI--PAC2B60 SS,SI--PAC2B65 FS,SI--PAC2B87 FS,SI20PAA2-62 FS,SI--PAD2-91 FS,SI--PAC3B26 SS,SI--PAC2B65 SS,SI--PAC3B26 FS,SI20PCC2A95 FS","SI--PAC2B60,SI--PAC2B65,SI--PAC2B87,SI20PAA2-62,SI--PAD2-91,SI--PAC3B26,SI--PAC2B65,SI--PAC3B26,SI20PCC2A95",35,35,35,35,8,8,8,8,7,,"HK1003 -Blackpoint D2 - Rev.0E DD30092021"
1-994,SI20EK-8-25,"COLD COMMISSIONING FUEL GAS COMPONENTS FOR GT20",5121,"HK1003-Rev.0E-3",TT_Task,"55902",-,-,-,0,TK_NotStart,24/05/2023,,20/06/2023,,"SI20UEN5D49 FS,SI--EK-8-08 FS,SI20EK-8-10 FS,SI20B--8-50 FS,SI-PM-40 FS,SI20TPM1A8-30 FS,SI20TPM1B8-30 FS,SI-P222-63 FS,SI20EK-8-97 FS,SI-P222-80 FS,SI20BBA8-37 SS,SI20MBA8-25 SS","SI20UEN5D49,SI--EK-8-08,SI20EK-8-10,SI20B--8-50,SI-PM-40,SI20TPM1A8-30,SI20TPM1B8-30,SI-P222-63,SI20EK-8-97,SI-P222-80,SI20BBA8-37,SI20MBA8-25","SI20EK-8-46 FS,SI20EK-8-99 FF","SI20EK-8-46,SI20EK-8-99",146,,150,,34,,35,,97,8,"HK1003 -Blackpoint D2 - Rev.0E DD30092021"
1-995,SI20BAT5B15,"INSTALLATION GRATING 20UBE/UBF",5121,"HK1003-Rev.0E-3",TT_Task,"55902",-,-,-,0,TK_NotStart,20/08/2022,,22/08/2022,,"SI20BAT4-10 FS,SI20UBF5B10 FS","SI20BAT4-10,SI20UBF5B10","SI20BAT8-10 FS","SI20BAT8-10",107,,107,,24,,25,,78,1416,"HK1003 -Blackpoint D2 - Rev.0E DD30092021"
1-996,SI20BAT7-15,"ERECTION GENERATOR TRANSFORMER 20BAT",5121,"HK1003-Rev.0E-3",TT_Task,"55902",-,-,-,0,TK_NotStart,20/08/2022,,23/09/2022,,"SI20BAT4-10 FS,SI20GM-6B15 FS","SI20BAT4-10,SI20GM-6B15","SI20BAT8-10 FS,SI20BZL7-38 FS,SI20BAW5-15 FS,SI20BAT7B72 FS,SI20ACA7-65 FS,SI20SGC6-15 FF,SI20SGY7A19 FS,SI20BAT7-16 SS,CL20ACA7-80 FS,SI20ACA9-85 FS,SI20BZK7A28 FS,SI20BZK7D11# FF,SI20BZK7D11# SS,SI20UBL5C-30 SS,SI20BAA7-15 SS","SI20BAT8-10,SI20BZL7-38,SI20BAW5-15,SI20BAT7B72,SI20ACA7-65,SI20SGC6-15,SI20SGY7A19,SI20BAT7-16,CL20ACA7-80,SI20ACA9-85,SI20BZK7A28,SI20BZK7D11#,SI20BZK7D11#,SI20UBL5C-30,SI20BAA7-15",107,,111,,24,,26,,78,152,"HK1003 -Blackpoint D2 - Rev.0E DD30092021"
1-997,SI20L--6A80,"REMOVE PIPES (CHEMICAL CLEANING) 20",5121,"HK1003-Rev.0E-3",TT_Task,"55902",-,-,-,0,TK_NotStart,03/06/2023,,30/06/2023,,"SI20--P6-75 FS","SI20--P6-75","SI20HA-9A45 FS,SI20--P6-77# SS,SI20L--8-35 SS,SI20MB-9-15 FS,SI20UGX8-45 SS,SI20--P6-77# FF,SI20HA-8-35 SS","SI20HA-9A45,SI20--P6-77#,SI20L--8-35,SI20MB-9-15,SI20UGX8-45,SI20--P6-77#,SI20HA-8-35",148,,151,,34,,35,,97,0,"HK1003 -Blackpoint D2 - Rev.0E DD30092021"
1-998,SI20MAV7-30,"CONSTR. POWER SUPPLY AVAIL. FOR LIFTING OIL SYSTEM 20MAV",5121,"HK1003-Rev.0E-3",TT_Task,"55902",-,-,-,0,TK_NotStart,07/02/2023,,20/02/2023,,"SI20MAV6-15 FS,SI20MAV7-15 FS,SI--2222-36 FS,SP20MBX4C25 FS","SI20MAV6-15,SI20MAV7-15,SI--2222-36,SP20MBX4C25","SI20MAV6-55 FS","SI20MAV6-55",131,,133,,30,,31,,89,32,"HK1003 -Blackpoint D2 - Rev.0E DD30092021"
1-999,SI20MAV6-70,"PREPARATION FOR PIPE CLEANING SYSTEM (ST)",5121,"HK1003-Rev.0E-3",TT_Task,"55902",-,-,-,0,TK_NotStart,04/12/2022,,24/12/2022,,"SI20MAV7-15 FS,SI20MAV6H15 FS","SI20MAV7-15,SI20MAV6H15","SI20MAV6-55 FS,SI20MA-6B84 FS","SI20MAV6-55,SI20MA-6B84",122,,125,,28,,29,,86,56,"HK1003 -Blackpoint D2 - Rev.0E DD30092021"
1-1000,SI20MAV6-55,"LUBE OIL FLUSHING (INCL. PRESSURE TESTS) ST",5121,"HK1003-Rev.0E-3",TT_Task,"55902",-,-,-,0,TK_NotStart,21/02/2023,,13/03/2023,,"SI20MA-6-55& SS,SI20MAV6-70 FS,SI20MAV6-55& SS,SI20MKA6-50 FS,SI20MAV7-30 FS,SI--2222-36 SS,SI20MA-6D50 FS,SI20MKA6-26 FS,SI20MKA6-37 FS,SI20MBA6-35 FS,SI20MBR6-35 FS,SI20MKA6-35 FS,SP20MBX4C25 FS,SI20E--7-10& FS","SI20MA-6-55&,SI20MAV6-70,SI20MAV6-55&,SI20MKA6-50,SI20MAV7-30,SI--2222-36,SI20MA-6D50,SI20MKA6-26,SI20MKA6-37,SI20MBA6-35,SI20MBR6-35,SI20MKA6-35,SP20MBX4C25,SI20E--7-10&","SI20MAV8-10 FS,SI20MA-8-10 FS,SI20MAD6-70 FS,SI20MA-6D80 FS,SI20MBV6-55 SS","SI20MAV8-10,SI20MA-8-10,SI20MAD6-70,SI20MA-6D80,SI20MBV6-55",133,,136,,31,,31,,91,32,"HK1003 -Blackpoint D2 - Rev.0E DD30092021"
1-1001,SI20LAC8B10,"(TOP-20LAB) FEEDWATER SUPPLY SYSTEM",5121,"HK1003-Rev.0E-3",TT_FinMile,"55902",-,-,-,0,TK_NotStart,14/04/2023,,14/04/2023,,"SI20LCW6H15 FS,SI20LCW7H15 FS,SI20LCA6A45 FS,SI20LCA6A16 FS,SI20LDK6A15 SS,SI20LCA6A15 FS,SI20LCA7A15 FS,SI20LAC6M15 FS,SI20LAC6B16 FS,SI20LAB7H15 FS,SI20LAB6H15 FS,SI20LAB6H45 FS,SI--9998-21& SS,SI20UBA7L15 FS,SI20LAC6B15 FS,SI20LAC6B18 FS,SI20ULY7M16 FS,SI20LCA7A15 FF,SI20LCL7A15 FS,SI20LCW7H15 FF,SI20LDK7H16 FS,SI20LAC7B15 FS,SI20SGC6J27 FS","SI20LCW6H15,SI20LCW7H15,SI20LCA6A45,SI20LCA6A16,SI20LDK6A15,SI20LCA6A15,SI20LCA7A15,SI20LAC6M15,SI20LAC6B16,SI20LAB7H15,SI20LAB6H15,SI20LAB6H45,SI--9998-21&,SI20UBA7L15,SI20LAC6B15,SI20LAC6B18,SI20ULY7M16,SI20LCA7A15,SI20LCL7A15,SI20LCW7H15,SI20LDK7H16,SI20LAC7B15,SI20SGC6J27","SI20LAC8B25 FS","SI20LAC8B25",140,,140,,32,,32,,95,112,"HK1003 -Blackpoint D2 - Rev.0E DD30092021"
1-1002,SI20PCB6H15,"ERECTION, NDT, PT / VALVES SERVICE COOL.WATER 20PCB",5121,"HK1003-Rev.0E-3",TT_Task,"55902",-,-,-,0,TK_NotStart,20/08/2022,,02/12/2022,,"SI20PAB6A15 SS,SI20UMC5C45 FS,SI20PCB6M40 FS,SI20UMC5C55 FS,SI---5P6A09 FS","SI20PAB6A15,SI20UMC5C45,SI20PCB6M40,SI20UMC5C55,SI---5P6A09","SI20PGB8-10 FS,SI20PAH8-25 FS,SI20PCB7H15 FS,SI20-6-16# FF,SI20-6-16# SS,SI20PCB8M10 FS,SI20PCB8M25 FS,SI20PCB6H16 FS","SI20PGB8-10,SI20PAH8-25,SI20PCB7H15,SI20-6-16#,SI20-6-16#,SI20PCB8M10,SI20PCB8M25,SI20PCB6H16",107,,121,,24,,28,,78,824,"HK1003 -Blackpoint D2 - Rev.0E DD30092021"
1-1003,SI20SCA2-70,"(DF) I&C INPUT (MEL) AIR COMPRESSOR SYSTEM SCA",5121,"HK1003-Rev.0E-3",TT_FinMile,"55902",-,-,-,100,TK_Complete,21/09/2021,21/09/2021,21/09/2021,21/09/2021,"SI20SCA2-85 SS","SI20SCA2-85","SI--C--2-55 FS","SI--C--2-55",59,59,59,59,13,13,13,13,30,,"HK1003 -Blackpoint D2 - Rev.0E DD30092021"
1-1004,SP--MKA2B41,"METHOD OF MOUNTING GENERATOR ON FOUNDATION",5121,"HK1003-Rev.0E-3",TT_Mile,"55902",-,-,-,100,TK_Complete,23/04/2021,23/04/2021,23/04/2021,23/04/2021,"SI-----1-04 SS,SI--2222-70 FS,SI-----1-05 FS,SP--MKA2-86 FS","SI-----1-04,SI--2222-70,SI-----1-05,SP--MKA2-86","SP20MKA3-81 FS","SP20MKA3-81",37,37,37,37,8,8,8,8,9,,"HK1003 -Blackpoint D2 - Rev.0E DD30092021"
1-1005,SI--UEN2A75,"(F) CONCRETE STRUCTURE DWGS ON SITE RELEASED FOR EXECUTION 20UEN",5121,"HK1003-Rev.0E-3",TT_FinMile,"55902",-,-,-,0,TK_NotStart,05/01/2022,,05/01/2022,,"SI--UEN2-50 FS,SI20UEN2-70 FS,SI20UEN2-77 FS","SI--UEN2-50,SI20UEN2-70,SI20UEN2-77","SI20UEN5-05.00 FS","SI20UEN5-05.00",74,,74,,17,,17,,44,16,"HK1003 -Blackpoint D2 - Rev.0E DD30092021"
1-1006,SP20MAW3-80,"(RFS) READY FOR SHIPMENT (NORTH SEA PORT) GLAND STEAM CONDENSER 20MAW",5121,"HK1003-Rev.0E-3",TT_FinMile,"55902",-,-,-,0,TK_NotStart,29/04/2022,,29/04/2022,,"SP20MAW4-10 FS","SP20MAW4-10","SI20MAW4-25 FS","SI20MAW4-25",90,,90,,21,,21,,60,664,"HK1003 -Blackpoint D2 - Rev.0E DD30092021"
1-1007,SP20MAW3-25,"DESIGN / MANUFACTURING GLAND STEAM CONDENSER 20MAW",5121,"HK1003-Rev.0E-3",TT_Task,"55902",-,-,-,25,TK_Active,31/07/2021,31/07/2021,01/04/2022,,"SP20MAW2-85 FS,SP20MA-2-81 SS,SI-----1-04 SS,SP20MA-3-25 SS","SP20MAW2-85,SP20MA-2-81,SI-----1-04,SP20MA-3-25","SP20MAW3-70 FS","SP20MAW3-70",52,52,86,,12,12,20,,24,664,"HK1003 -Blackpoint D2 - Rev.0E DD30092021"
1-1008,SI20BAA4-25,"TRANSPORT IPB IPB 20BAA",5121,"HK1003-Rev.0E-3",TT_Task,"55902",-,-,-,0,TK_NotStart,05/07/2022,,29/08/2022,,"SI20BAA3B80 FS","SI20BAA3B80","SI20BAA4-40 FS","SI20BAA4-40",100,,108,,23,,25,,72,352,"HK1003 -Blackpoint D2 - Rev.0E DD30092021"
1-1009,SI20HA-4B40,"(OTD-OS) ON SITE PIPING HRSG20_1st Part (LB CARBON STEEL)",5121,"HK1003-Rev.0E-3",TT_FinMile,"55902",-,-,-,0,TK_NotStart,26/02/2022,,26/02/2022,,"SI20HA-4B25 FS","SI20HA-4B25","SI20HAA8E17 FS,SI20LCL8B10 FS,SI20HAD8G10 FS,SI20HAD8E10 FS,SI20LBH8D10 FS,SI20HAD8F10 FS,SI20HB-6-14 FS,SI20HB-6-13 FS","SI20HAA8E17,SI20LCL8B10,SI20HAD8G10,SI20HAD8E10,SI20LBH8D10,SI20HAD8F10,SI20HB-6-14,SI20HB-6-13",82,,82,,19,,19,,51,544,"HK1003 -Blackpoint D2 - Rev.0E DD30092021"
1-1010,SI--2222-51,"REVIEW CLIENT KKS PLANT LABELLING",5121,"HK1003-Rev.0E-3",TT_Task,"55902",-,-,-,0,TK_NotStart,19/11/2021,,13/12/2021,,"SI--2222-50 SS","SI--2222-50","SI--2222-80 FS","SI--2222-80",67,,71,,15,,16,,39,1880,"HK1003 -Blackpoint D2 - Rev.0E DD30092021"
1-1011,SI--2222-50,"KKS LISTING COMPLETE",5121,"HK1003-Rev.0E-3",TT_Mile,"55902",-,-,-,0,TK_NotStart,19/11/2021,,19/11/2021,,"SI--HA-2-70 SS,SI--L--2-50 SS,SI--C--2A70 FS,SI--G--2-50 SS,SI--P--2-50 SS","SI--HA-2-70,SI--L--2-50,SI--C--2A70,SI--G--2-50,SI--P--2-50","SI--2222-51 SS","SI--2222-51",67,,67,,15,,15,,39,1880,"HK1003 -Blackpoint D2 - Rev.0E DD30092021"
1-1012,SI--2222-85,"CONTRACT INTO FORCE KKS PLANT LABELLING",5121,"HK1003-Rev.0E-3",TT_Mile,"55902",-,-,-,0,TK_NotStart,25/01/2022,,25/01/2022,,"SI--2222-80 FS","SI--2222-80","SI--2223-54 FS","SI--2223-54",77,,77,,18,,18,,46,1880,"HK1003 -Blackpoint D2 - Rev.0E DD30092021"
1-1013,SI--HA-2-75,"PREPARATION PROCESS DOCUMENTS FOR RFQ HRSG",5121,"HK1003-Rev.0E-3",TT_Task,"55902",-,-,-,100,TK_Complete,01/08/2020,01/08/2020,04/09/2020,04/09/2020,"SI-----1-01 SS","SI-----1-01","SI--G--2-20 SS,SI--HA-2A86 SS,SI--HA-2-11 SS,SI--HA-2-76 FS","SI--G--2-20,SI--HA-2A86,SI--HA-2-11,SI--HA-2-76",0,0,4,4,0,0,1,1,0,,"HK1003 -Blackpoint D2 - Rev.0E DD30092021"
1-1014,SI20SGE6E15,"ERECTION FIRE FIGHTING FOR TS AUXILIARY OIL SYSTEMS / H2 SYSTEMS SGC",5121,"HK1003-Rev.0E-3",TT_Task,"55902",-,-,-,0,TK_NotStart,25/08/2022,,19/10/2022,,"SI--SG-2-05 FS,SI20MAV6-15 SS,SI20MAV6-15 FS,SI-P222-65 FS","SI--SG-2-05,SI20MAV6-15,SI20MAV6-15,SI-P222-65","SI20SGC8E10 FS,SI-P222-133 FS,SI-P222-173 FS,SI-P222-135 FS","SI20SGC8E10,SI-P222-133,SI-P222-173,SI-P222-135",107,,115,,25,,26,,79,408,"HK1003 -Blackpoint D2 - Rev.0E DD30092021"
1-1015,SI20SGM6-15,"ERECTION FF INERTGAS SYSTEM IN 20UBA76xx/77xx/7410/73xx/7210/7110 SGM",5121,"HK1003-Rev.0E-3",TT_Task,"55902",-,-,-,0,TK_NotStart,05/09/2022,,18/09/2022,,"SI--SG-2-05 FS,SI20UBA7-25 FS,SI20SGJ4-25 FS,SI20SG-4-41 FS,SI20UBA7-17 FS,SI20UBA7-104 FS,SI20UBA7-15 SS,SI20SG-4-41 FF,SI-P222-65 FS","SI--SG-2-05,SI20UBA7-25,SI20SGJ4-25,SI20SG-4-41,SI20UBA7-17,SI20UBA7-104,SI20UBA7-15,SI20SG-4-41,SI-P222-65","SI20SGM8-10 FS,SI-P222-133 FS,SI-P222-173 FS,SI-P222-135 FS","SI20SGM8-10,SI-P222-133,SI-P222-173,SI-P222-135",109,,111,,25,,25,,80,656,"HK1003 -Blackpoint D2 - Rev.0E DD30092021"
1-1016,SI20LBG8A10,"(TOP-20LBG) AUXILIARY STEAM SYSTEM",5121,"HK1003-Rev.0E-3",TT_FinMile,"55902",-,-,-,0,TK_NotStart,01/05/2023,,01/05/2023,,"SI20LBB7J15 FS,SI20LBB6J47 FS,SI20LBA6J45 FS,SI20LBB6J49 FS,SI20LBB7J17 FS,SI20LBG6A47 FS,SI20LBB6J73 FS,SI20LBA6H70 FS,SI20LBA6H45 FS,SI20LBA6J70 FS,SI20LBA7J15 FS,SI20BZK7E25 FS,SI20LBA7H15 FS,SI20LBG6A45 FS,SI20LBG6A17 FS,SI20LBG6A15 FS,SI--9998-21& SS,SI20LBG7A15 FS,SI20LBG7A17 FS,SI20LBG6A47 SS,SI20LBG7C15 FS,SI20LBA6H45 FF,SI20LBA7H15 FF,SI20LBA7H16 FS,SI20LBA6J72 FS,SI20LBA6J73 FS,SI20LBA7J16 FS","SI20LBB7J15,SI20LBB6J47,SI20LBA6J45,SI20LBB6J49,SI20LBB7J17,SI20LBG6A47,SI20LBB6J73,SI20LBA6H70,SI20LBA6H45,SI20LBA6J70,SI20LBA7J15,SI20BZK7E25,SI20LBA7H15,SI20LBG6A45,SI20LBG6A17,SI20LBG6A15,SI--9998-21&,SI20LBG7A15,SI20LBG7A17,SI20LBG6A47,SI20LBG7C15,SI20LBA6H45,SI20LBA7H15,SI20LBA7H16,SI20LBA6J72,SI20LBA6J73,SI20LBA7J16","SI20LBG8A25 FS","SI20LBG8A25",143,,143,,33,,33,,96,56,"HK1003 -Blackpoint D2 - Rev.0E DD30092021"
1-1017,SI20LCL6B40,"(RFP) READY FOR PIPE CONNECTION BOILER BLOWDOWN PUMP 20LCL",5121,"HK1003-Rev.0E-3",TT_FinMile,"55902",-,-,-,0,TK_NotStart,29/07/2022,,29/07/2022,,"SI20LCL6B15 SS","SI20LCL6B15","SI20LCL6A15 FS,SI20BZK7-187 FS","SI20LCL6A15,SI20BZK7-187",103,,103,,24,,24,,76,1048,"HK1003 -Blackpoint D2 - Rev.0E DD30092021"
1-1018,SI20LCL6B15,"ERECTION STEAM BOILER BLOWDOWN PUMP 20LCL",5121,"HK1003-Rev.0E-3",TT_Task,"55902",-,-,-,0,TK_NotStart,23/07/2022,,19/08/2022,,"SI20LCL2B05 FS,SI20LCL4B40 FS,SI20HA-6C22 FS,SI20UHA5-45 FS,SI20LCL6B41 FS","SI20LCL2B05,SI20LCL4B40,SI20HA-6C22,SI20UHA5-45,SI20LCL6B41","SI20LCL6B40 SS,SI20LCL7B15 FS,SI20LCL8B10 FS,SI20BZP7-135 SS,SI20UHW6A-15 FF","SI20LCL6B40,SI20LCL7B15,SI20LCL8B10,SI20BZP7-135,SI20UHW6A-15",103,,106,,24,,24,,74,336,"HK1003 -Blackpoint D2 - Rev.0E DD30092021"
1-1019,SI20MB-6A15,"ERECTION, NDT, PT / VALVES 20MB (BOP)",5121,"HK1003-Rev.0E-3",TT_Task,"55902",-,-,-,0,TK_NotStart,29/10/2022,,06/01/2023,,"SI20MBA6-40 FS,SI20MBA6D40 FS,SI20MB-6-40 FS,SI20UMC5E54 FS,SI20UMC5E50 FS","SI20MBA6-40,SI20MBA6D40,SI20MB-6-40,SI20UMC5E54,SI20UMC5E50","SI20MBA8-10 FS,SI20MBL8-10 FS,SI20MBX8-10 FS,SI20GKB6H16 FF,SI20MBQ6H15 FS,SI20MB-7H15 FS,SI20MBV8-10 FS,SI20MBA8A10 FS,SI20MBP8-10 FS,SI20MBA8D10 FS,SI20MBA8B10 FS,SI20MBH8-10 FS,SI20MBX8E10 FS,SI20-6-16# FF,SI20-6-16# SS,SI20MB-6A16 FS","SI20MBA8-10,SI20MBL8-10,SI20MBX8-10,SI20GKB6H16,SI20MBQ6H15,SI20MB-7H15,SI20MBV8-10,SI20MBA8A10,SI20MBP8-10,SI20MBA8D10,SI20MBA8B10,SI20MBH8-10,SI20MBX8E10,SI20-6-16#,SI20-6-16#,SI20MB-6A16",117,,126,,27,,29,,84,224,"HK1003 -Blackpoint D2 - Rev.0E DD30092021"
1-1020,SI--HA-2-85,"CONTRACT INTO FORCE HRSG",5121,"HK1003-Rev.0E-3",TT_Mile,"55902",-,-,-,100,TK_Complete,27/01/2021,27/01/2021,27/01/2021,27/01/2021,"SI-----1-05 FS,SI-----1-03 FS,SI--HA-2-90 FS,SI--HA-2A86 FS,SI--HA-2-80 FS,SI--HA-2-81 FS,SI--HA-2-93 SS,SI20HA-2-85& SS,SI--HA-2-10 FS,SI--HA-2-92 SS,SI--LBH2D15 FS,SI--HA-2A11 FS","SI-----1-05,SI-----1-03,SI--HA-2-90,SI--HA-2A86,SI--HA-2-80,SI--HA-2-81,SI--HA-2-93,SI20HA-2-85&,SI--HA-2-10,SI--HA-2-92,SI--LBH2D15,SI--HA-2A11","SI--HA-2A85 SS,SI--HB-2B61 FS,SI--UHA2-60 FS,SI--HA-2A01 SS,SI20HA-3D26 SS,SI--HB-2-16 FS,SI20HA-3D25 FS,SI--HB-3-25 FS,SI--HB-3-25 SS,SI--HB-3C15 FS,SI20HA-3C25 FS,SI20HA-3D25 SS,SI--HA-3E26 FS,SI--HA-3E25 FS,SI--HA-3E27 FS,SI20HA-3E84 FS,SI20HB-3C91 FS,SI20HB-3F25 FS,SI20HB-3D25 FS,SI20HB-3E25 FS,SI20LBH3D25 FS,SI20CJF3-25 FS,SI20LCL3B25 FS,SI20UBA3B-25 FS,SI--BFF3-25 FS,SI20UBA3L25 FS,SI20LBF3B25 FS,SI20QU-3-25 FS,SI20HSJ3-81 FS,SI--LBF2B85 SS,SI20UMC2B-5 FS,SI--HA-2-100 FS,SI20LAC3B30 FS,SI20LCA3B39 FS,SI--HB-2D80 FS,SI20HS-2-88 FS,SI--BFF2-15 FS,SI--HB-2B60 FS,SI-P221-430& FS,SI-P221-561& FS,SI-P221-562& FS,SI-P221-563& FS,SI-P221-564& FS,SI-P221-565& FS,SI20HA-3D5 FS,SI20HA-3D81 FS,SI20HA-3D82 FS,SI20HA-3C25 SS,SI20HA-3-15# SS,SI20CJF2-15 FS,SI20UHA2B-5 FS,SI--HA-2-101 FS","SI--HA-2A85,SI--HB-2B61,SI--UHA2-60,SI--HA-2A01,SI20HA-3D26,SI--HB-2-16,SI20HA-3D25,SI--HB-3-25,SI--HB-3-25,SI--HB-3C15,SI20HA-3C25,SI20HA-3D25,SI--HA-3E26,SI--HA-3E25,SI--HA-3E27,SI20HA-3E84,SI20HB-3C91,SI20HB-3F25,SI20HB-3D25,SI20HB-3E25,SI20LBH3D25,SI20CJF3-25,SI20LCL3B25,SI20UBA3B-25,SI--BFF3-25,SI20UBA3L25,SI20LBF3B25,SI20QU-3-25,SI20HSJ3-81,SI--LBF2B85,SI20UMC2B-5,SI--HA-2-100,SI20LAC3B30,SI20LCA3B39,SI--HB-2D80,SI20HS-2-88,SI--BFF2-15,SI--HB-2B60,SI-P221-430&,SI-P221-561&,SI-P221-562&,SI-P221-563&,SI-P221-564&,SI-P221-565&,SI20HA-3D5,SI20HA-3D81,SI20HA-3D82,SI20HA-3C25,SI20HA-3-15#,SI20CJF2-15,SI20UHA2B-5,SI--HA-2-101",25,25,25,25,5,5,5,5,3,,"HK1003 -Blackpoint D2 - Rev.0E DD30092021"
1-1021,SI20BU-8-25,"COMMISSIONING DC SYSTEM 20BU/BRU",5121,"HK1003-Rev.0E-3",TT_Task,"55902",-,-,-,0,TK_NotStart,14/02/2023,,20/02/2023,,"SI--C--2B83 FS,SI20UBA8-12 FS,SI--C--2-41 FS,SI-PM-40 FS,SI20UBA8G29 SS,SI20BFA8-25 FS,SI20TPE6A8-30 FS,SI20TPE6II8-30 FS","SI--C--2B83,SI20UBA8-12,SI--C--2-41,SI-PM-40,SI20UBA8G29,SI20BFA8-25,SI20TPE6A8-30,SI20TPE6II8-30","SI20BAT8-25 FS,SI20BUK8-50 FS,SI--BRU8-21 SS,SI20UBA8G28 SS","SI20BAT8-25,SI20BUK8-50,SI--BRU8-21,SI20UBA8G28",132,,133,,30,,31,,90,16,"HK1003 -Blackpoint D2 - Rev.0E DD30092021"
1-1022,SI20MAG6A15,"ERECTION, NDT, PT  PIPES / VALVES MAG",5121,"HK1003-Rev.0E-3",TT_Task,"55902",-,-,-,0,TK_NotStart,17/06/2022,,01/12/2022,,"SI20MAG6-40 FF,SI20MAG6M10 FS,SI20MAG6-65 FS,SI20UMY6M71 FS,SI---1P6A05 FS","SI20MAG6-40,SI20MAG6M10,SI20MAG6-65,SI20UMY6M71,SI---1P6A05","SI20LCW6H15 FF,SI20MAG6A45 FS,SI20MAG8-10 FS,SI20-6-16# FF,SI20-6-16# SS","SI20LCW6H15,SI20MAG6A45,SI20MAG8-10,SI20-6-16#,SI20-6-16#",97,,121,,22,,28,,70,568,"HK1003 -Blackpoint D2 - Rev.0E DD30092021"
1-1023,SI20MAG6-39,"CONNECTION AND WELDING OF REAR COVER MAG20",5121,"HK1003-Rev.0E-3",TT_Task,"55902",-,-,-,0,TK_NotStart,06/08/2022,,12/08/2022,,"SI20MAG6-42 FS","SI20MAG6-42","SI20MAG6-48 FS,SI20PAB6A15 FS,SI20MAG6-40 FS","SI20MAG6-48,SI20PAB6A15,SI20MAG6-40",105,,105,,24,,24,,77,360,"HK1003 -Blackpoint D2 - Rev.0E DD30092021"
1-1024,SI20GM-8F10,"(TOP-20GM-03) OIL WATER SEPARATOR AND DISCHARGE SYSTEM",5121,"HK1003-Rev.0E-3",TT_FinMile,"55902",-,-,-,0,TK_NotStart,14/04/2023,,14/04/2023,,"SI20GM-6H16 FS,SI20GM-6H18 FS,SI20GM-6H19 FS,SI20GM-6H17 FS,SI20UBH5E49 FS","SI20GM-6H16,SI20GM-6H18,SI20GM-6H19,SI20GM-6H17,SI20UBH5E49","SI20--P6-75 FS,SI20TPM24A8-30 FS","SI20--P6-75,SI20TPM24A8-30",140,,140,,32,,32,,95,48,"HK1003 -Blackpoint D2 - Rev.0E DD30092021"
1-1025,SI--CYA4-25,"TRANSPORT TELECOMMUNICATION CYA",5121,"HK1003-Rev.0E-3",TT_Task,"55902",-,-,-,0,TK_NotStart,25/09/2022,,19/11/2022,,"SI--CYA3-80 FS","SI--CYA3-80","SI--CYA4-40 FS","SI--CYA4-40",112,,120,,26,,28,,82,136,"HK1003 -Blackpoint D2 - Rev.0E DD30092021"
1-1026,SI--CYA3-25,"MANUFACTURING / SHOP TEST TELECOMMUNICATION CYA",5121,"HK1003-Rev.0E-3",TT_Task,"55902",-,-,-,0,TK_NotStart,30/01/2022,,27/08/2022,,"SI--CYA2-85 FS,SI--2222-30 FS,SI--CYA2-94 FS","SI--CYA2-85,SI--2222-30,SI--CYA2-94","SI--CYA3-70 FS","SI--CYA3-70",78,,108,,18,,25,,47,136,"HK1003 -Blackpoint D2 - Rev.0E DD30092021"
1-1027,SI20BF-8-25,"FEEDER COMMISSIONING LV SWITCHGEAR BFF/BMF",5121,"HK1003-Rev.0E-3",TT_Task,"55902",-,-,-,0,TK_NotStart,18/04/2023,,05/06/2023,,"SI20BFT8-77 FS,SI20BF-8-21 FS,SI20BFT8-75 FS","SI20BFT8-77,SI20BF-8-21,SI20BFT8-75","SI20HAD8E25 SS,SI20HAD8G25 SS,SI20LBH8D25 SS,SI20HAD8F25 SS,SI20HA-8-25 SS,SI20LBA8H25 SS,SI20LBB8H25 SS,SI20LCL8B25 SS,SI20LBG8A25 SS,SI20LBA8J25 SS,SI20SGJ8-21 SS,SI20BZL8-25 SS","SI20HAD8E25,SI20HAD8G25,SI20LBH8D25,SI20HAD8F25,SI20HA-8-25,SI20LBA8H25,SI20LBB8H25,SI20LCL8B25,SI20LBG8A25,SI20LBA8J25,SI20SGJ8-21,SI20BZL8-25",141,,148,,33,,34,,95,56,"HK1003 -Blackpoint D2 - Rev.0E DD30092021"
1-1028,SP20MBR3A80,"(RFS) READY FOR SHIPMENT DIFFUSER 20MBR",5121,"HK1003-Rev.0E-3",TT_FinMile,"55902",-,-,-,0,TK_NotStart,22/03/2022,,22/03/2022,,"SP20MBR4-10 FS","SP20MBR4-10","SI20MBR4-25 FS","SI20MBR4-25",85,,85,,19,,19,,53,632,"HK1003 -Blackpoint D2 - Rev.0E DD30092021"
1-1029,SI--HA-2-14,"PROJECT SPECIFICATION HRSG (BLACK BOXES, MOTORS) SPEC.",5121,"HK1003-Rev.0E-3",TT_FinMile,"55902",-,-,-,100,TK_Complete,07/10/2020,07/10/2020,07/10/2020,07/10/2020,"SI--HA-2-81 FF,SI--B--2-81 FS","SI--HA-2-81,SI--B--2-81","SI--HA-2-05 FS","SI--HA-2-05",9,9,9,9,2,2,2,2,0,,"HK1003 -Blackpoint D2 - Rev.0E DD30092021"
1-1030,SI20UVM2-75,"(F) CONCRETE STRUCTURE DWGS ON SITE RELEASED FOR EXECUTION 20UVM01",5121,"HK1003-Rev.0E-3",TT_FinMile,"55902",-,-,-,0,TK_NotStart,05/05/2022,,05/05/2022,,"SI20UVM2-50 FS,SI20UVM2-70 FS,SI20UVM2-85 FS","SI20UVM2-50,SI20UVM2-70,SI20UVM2-85","SI20UVM5-05 FS","SI20UVM5-05",91,,91,,21,,21,,63,848,"HK1003 -Blackpoint D2 - Rev.0E DD30092021"
1-1031,SI20UBA2-5,"(MS3) CONCRETE STRUCTURE FINAL DIMENSIONS, LOADS AVAILABLE 20UBA1110/20",5121,"HK1003-Rev.0E-3",TT_FinMile,"55902",-,-,-,100,TK_Complete,23/06/2021,23/06/2021,23/06/2021,23/06/2021,"SI--UBA2K60 FS,SI-----1-01 FS","SI--UBA2K60,SI-----1-01","SI20UBA2-10 FF,SI20UBA2-15 FS,SI20UBA2-10 FS","SI20UBA2-10,SI20UBA2-15,SI20UBA2-10",46,46,46,46,10,10,10,10,18,,"HK1003 -Blackpoint D2 - Rev.0E DD30092021"
1-1032,SI20LCL2B85,"CONTRACT INTO FORCE BOILER BLOWDOWN PUMP LCL",5121,"HK1003-Rev.0E-3",TT_Mile,"55902",-,-,-,100,TK_Complete,03/05/2021,03/05/2021,03/05/2021,03/05/2021,"SI20LCL2B80 FS,SI-----1-05 FS","SI20LCL2B80,SI-----1-05","SI20LCL3B25 FS,SI20LCL3B26 FS,SI20LCL2B60 SS,SI20LCL2B88 FS,SI20LCL2B66 FS","SI20LCL3B25,SI20LCL3B26,SI20LCL2B60,SI20LCL2B88,SI20LCL2B66",39,39,39,39,9,9,9,9,11,,"HK1003 -Blackpoint D2 - Rev.0E DD30092021"
1-1033,SI20MKC8-75,"ENERGISATION SEE TRANSFORMER 20MKC01",5121,"HK1003-Rev.0E-3",TT_Mile,"55902",-,-,-,0,TK_NotStart,09/06/2023,,09/06/2023,,"SI20M--8-25 FS,SI--B--2-68 FS,SI20UBA7-15 FS,SI20SGY7A15 FS,SI20UBA7-25 FS,SI20BFA8-25 FS,SI--B--2-93 FS,SI20B--8-50 FS","SI20M--8-25,SI--B--2-68,SI20UBA7-15,SI20SGY7A15,SI20UBA7-25,SI20BFA8-25,SI--B--2-93,SI20B--8-50","SI20CH-8-25 FS","SI20CH-8-25",148,,148,,34,,34,,98,64,"HK1003 -Blackpoint D2 - Rev.0E DD30092021"
1-1034,SI20M--8-25,"COLD COMMISSIONING SEE TRANSFORMER 20MKC01",5121,"HK1003-Rev.0E-3",TT_Task,"55902",-,-,-,0,TK_NotStart,14/03/2023,,20/03/2023,,"SI20M--7A15 FS,SI20SGY7A22 FS,SI20SGC6J25 FS,SI-PM-40 FS,SI20BFT8-79 FS,SI20BUK8-50 FS,SI20CJT8A20 SS","SI20M--7A15,SI20SGY7A22,SI20SGC6J25,SI-PM-40,SI20BFT8-79,SI20BUK8-50,SI20CJT8A20","SI20MKC8-75 FS,SI20B--8-50 FS,SI20M--8-68 SS","SI20MKC8-75,SI20B--8-50,SI20M--8-68",136,,137,,31,,32,,92,184,"HK1003 -Blackpoint D2 - Rev.0E DD30092021"
1-1035,SI20MKA3-85,"RECEIPT OF GENERATOR CASING IN FACTORY FOR 20MKA",5121,"HK1003-Rev.0E-3",TT_Mile,"55902",-,-,-,0,TK_NotStart,26/10/2021,,26/10/2021,,"SP--MKA2-86 SS,SP--MKA2-87 FS,SP20MKA3-25 SS","SP--MKA2-86,SP--MKA2-87,SP20MKA3-25","SP20MKA3-81 FS","SP20MKA3-81",64,,64,,15,,15,,36,1640,"HK1003 -Blackpoint D2 - Rev.0E DD30092021"
1-1036,SI20UBX5B15,"ERECTION STEEL STRUCTURE 20UBX/20UBG",5121,"HK1003-Rev.0E-3",TT_Task,"55902",-,-,-,0,TK_NotStart,10/07/2022,,23/07/2022,,"SI20UBX5B10 FS","SI20UBX5B10","SI20UBX5B45 FS","SI20UBX5B45",101,,103,,23,,24,,73,640,"HK1003 -Blackpoint D2 - Rev.0E DD30092021"
1-1037,SI20UMC2B-50,"(OTD-OS) ON SITE TURBOSET EMBEDDED PARTS MA- (UMC)",5121,"HK1003-Rev.0E-3",TT_FinMile,"55902",-,-,-,100,TK_Complete,15/09/2021,15/09/2021,15/09/2021,15/09/2021,"SI20UMC2B-45 FS","SI20UMC2B-45","SI20UMC5A25 FS","SI20UMC5A25",58,58,58,58,13,13,13,13,29,,"HK1003 -Blackpoint D2 - Rev.0E DD30092021"
1-1038,SI20UMC2B-45,"TRANSPORT TURBOSET EMBEDDED PARTS MA- POE TO SITE (UMC)",5121,"HK1003-Rev.0E-3",TT_Task,"55902",-,-,-,100,TK_Complete,14/07/2021,14/07/2021,07/09/2021,07/09/2021,"SI--LOG4-10 FS,SI20UMC2B-40 FS","SI--LOG4-10,SI20UMC2B-40","SI20UMC2B-50 FS","SI20UMC2B-50",49,49,57,57,11,11,13,13,21,,"HK1003 -Blackpoint D2 - Rev.0E DD30092021"
1-1039,SI20MKA4-25,"TRANSPORT GEN. 20MKA",5121,"HK1003-Rev.0E-3",TT_Task,"55902",-,-,-,0,TK_NotStart,30/04/2022,,23/07/2022,,"SI--LOG4-30 FS,SP20MKA3B80 FS,SP20MKA3-80 FS","SI--LOG4-30,SP20MKA3B80,SP20MKA3-80","SI20MKA4-40 FS","SI20MKA4-40",91,,103,,21,,24,,60,376,"HK1003 -Blackpoint D2 - Rev.0E DD30092021"
1-1040,SP20CJT4-25,"TRANSPORT SFC CUBICLES 20CJT TO WORKSHOP",5121,"HK1003-Rev.0E-3",TT_Task,"55902",-,-,-,0,TK_NotStart,22/02/2022,,23/02/2022,,"SP20CJT3-25 FS,SP20CJP2-70 FS","SP20CJT3-25,SP20CJP2-70","SP20UBA3H55 FS","SP20UBA3H55",81,,81,,19,,19,,50,592,"HK1003 -Blackpoint D2 - Rev.0E DD30092021"
1-1041,SI20UEY2-50,"PREPARATION FOUNDATION GROUNDING DWGS 20UEY03-05",5121,"HK1003-Rev.0E-3",TT_Task,"55902",-,-,-,77,TK_Active,27/08/2021,27/08/2021,09/10/2021,,"SI20UEY2-70 FF,SI--BAW2-02 FS","SI20UEY2-70,SI--BAW2-02","SI20UEY2-75 FS,SI20UEY2-52 FS","SI20UEY2-75,SI20UEY2-52",55,55,62,,13,13,14,,27,1048,"HK1003 -Blackpoint D2 - Rev.0E DD30092021"
1-1042,SI20GHD6I15,"ERECTION / PT PIPES GHD FOR UGD IN UMC",5121,"HK1003-Rev.0E-3",TT_Task,"55902",-,-,-,0,TK_NotStart,01/08/2022,,02/10/2022,,"SI--G--2-50 FS,SI20GHD6H15 FS,SI-P222-115 FS","SI--G--2-50,SI20GHD6H15,SI-P222-115","SI20GHD8A10 FS,SI20GHD7H15 SS,SI20TPM6B6-20 SS","SI20GHD8A10,SI20GHD7H15,SI20TPM6B6-20",104,,113,,24,,26,,76,1424,"HK1003 -Blackpoint D2 - Rev.0E DD30092021"
1-1043,SI20GHD6H15,"PRE-ERECTION / PT PIPES GHD FOR UGD TO UMC",5121,"HK1003-Rev.0E-3",TT_Task,"55902",-,-,-,0,TK_NotStart,11/07/2022,,31/07/2022,,"SI--G--2-50 FS,SI20UEY5-45 FS,SI20UMC5C55 SS,SI---5P6A09 FS","SI--G--2-50,SI20UEY5-45,SI20UMC5C55,SI---5P6A09","SI20GHD6I15 FS","SI20GHD6I15",101,,104,,23,,24,,73,1424,"HK1003 -Blackpoint D2 - Rev.0E DD30092021"
1-1044,SI20BAT3-25,"DETAIL DESIGN / MANUFACTURING / SHOP TEST MAIN TRANSFORMERS 20BAT",5121,"HK1003-Rev.0E-3",TT_Task,"55902",-,-,-,36,TK_Active,05/05/2021,05/05/2021,15/06/2022,,"SI20BAT2-85 FS","SI20BAT2-85","SI20BAT3B70 FS","SI20BAT3B70",39,39,97,,9,9,22,,11,152,"HK1003 -Blackpoint D2 - Rev.0E DD30092021"
1-1045,SI20BAT8-25,"COMMISSIONING MAIN TRANSFORMER 20BAT",5121,"HK1003-Rev.0E-3",TT_Task,"55902",-,-,-,0,TK_NotStart,21/02/2023,,06/03/2023,,"SI20BAT8-10 FS,SI20BU-8-25 FS,SI20BAT7-17 FS,SI-PM-40 FS,SI20BUK8-50 FS","SI20BAT8-10,SI20BU-8-25,SI20BAT7-17,SI-PM-40,SI20BUK8-50","SI20CH-8A25 FS,SI20CHA8-25 FF,SI20BBT8-25 FS,SI20BAC8-26 FS","SI20CH-8A25,SI20CHA8-25,SI20BBT8-25,SI20BAC8-26",133,,135,,31,,31,,91,16,"HK1003 -Blackpoint D2 - Rev.0E DD30092021"
1-1046,SI--M--2A20,"PLANT LAYOUT DRAWING (FINAL)",5121,"HK1003-Rev.0E-3",TT_FinMile,"55902",-,-,-,100,TK_Complete,28/01/2021,28/01/2021,28/01/2021,28/01/2021,"SI-----1-04 SS","SI-----1-04","SI--U--2-16 FS","SI--U--2-16",25,25,25,25,6,6,6,6,3,,"HK1003 -Blackpoint D2 - Rev.0E DD30092021"
1-1047,SI20LCA8M10,"(TOP-20LCA) MAIN CONDENSATE SUPPLY AND PREHEATING SYSTEM",5121,"HK1003-Rev.0E-3",TT_FinMile,"55902",-,-,-,0,TK_NotStart,28/04/2023,,28/04/2023,,"SI20LAB7H15 FS,SI20LAB6H15 FS,SI20LCA6A45 FS,SI20LAB6H45 FS,SI20LDK6A15 SS,SI20LCA6A16 FS,SI20LCA7A15 FS,SI20LCW7H15 FS,SI20LCA6M16 FS,SI20LCB6B15 FS,SI20LCA6A15 FS,SI20LCW6H15 FS,SI--9998-21& SS,SI20LCB7B15 FS,SI20LCA6A45 SS,SI20LCE7A15 FS","SI20LAB7H15,SI20LAB6H15,SI20LCA6A45,SI20LAB6H45,SI20LDK6A15,SI20LCA6A16,SI20LCA7A15,SI20LCW7H15,SI20LCA6M16,SI20LCB6B15,SI20LCA6A15,SI20LCW6H15,SI--9998-21&,SI20LCB7B15,SI20LCA6A45,SI20LCE7A15","SI20LCA8M25 FS","SI20LCA8M25",142,,142,,33,,33,,96,48,"HK1003 -Blackpoint D2 - Rev.0E DD30092021"
1-1048,SI20LCA6M40,"(RFP) READY FOR PIPE CONNECTION CONDENS. RECIRCULATING PUMP LCA51",5121,"HK1003-Rev.0E-3",TT_FinMile,"55902",-,-,-,0,TK_NotStart,27/05/2022,,27/05/2022,,"SI20LCA6M16 FS","SI20LCA6M16","SI20LCA6A15 FS","SI20LCA6A15",94,,94,,22,,22,,66,904,"HK1003 -Blackpoint D2 - Rev.0E DD30092021"
1-1049,SI20MAN6H15,"ERECTION, NDT, PT PIPES / VALVES MAN",5121,"HK1003-Rev.0E-3",TT_Task,"55902",-,-,-,0,TK_NotStart,10/12/2022,,17/02/2023,,"SI20MA-6A11 FS,SI20LBB6J17 FF,SI20LCA6A15 FF,SI---1P6A05 FS","SI20MA-6A11,SI20LBB6J17,SI20LCA6A15,SI---1P6A05","SI20MAN8-10 FS,SI20MAN7H15 FS,SI20-6-16# FF,SI20-6-16# SS,SI20MAN6H16 FS","SI20MAN8-10,SI20MAN7H15,SI20-6-16#,SI20-6-16#,SI20MAN6H16",123,,132,,28,,31,,86,112,"HK1003 -Blackpoint D2 - Rev.0E DD30092021"
1-1050,SI--BZK2-82,"PREPARATION OF FINAL LENGTH MATRIX",5121,"HK1003-Rev.0E-3",TT_Task,"55902",-,-,-,100,TK_Complete,16/05/2021,16/05/2021,14/07/2021,14/07/2021,"SI--BZK2-19 FS","SI--BZK2-19","SI--BZK2-81 FS","SI--BZK2-81",41,41,49,49,9,9,11,11,13,,"HK1003 -Blackpoint D2 - Rev.0E DD30092021"
1-1051,SI--BZK2-81,"FINAL LENGTH MATRIX AVAILABLE",5121,"HK1003-Rev.0E-3",TT_Mile,"55902",-,-,-,100,TK_Complete,15/07/2021,15/07/2021,15/07/2021,15/07/2021,"SI--5552-64 FS,SI--BZK2-82 FS","SI--5552-64,SI--BZK2-82","SI--B--7-55 FS,SI20BZK7-25 SS,SI20UBA7-17 FS,SI--B--2-68 FS,SI--BZK2-15 FS","SI--B--7-55,SI20BZK7-25,SI20UBA7-17,SI--B--2-68,SI--BZK2-15",49,49,49,49,11,11,11,11,22,,"HK1003 -Blackpoint D2 - Rev.0E DD30092021"
1-1052,SI20UBD5-11,"(H) START PLACING FORMWORK 20UBD03/04",5121,"HK1003-Rev.0E-3",TT_Mile,"55902",-,-,-,0,TK_NotStart,13/05/2022,,13/05/2022,,"SI20UBD5-55 FS,SI20UBA5-52 SS,SI-----5-21& FS,SI20UBD2E94 FS","SI20UBD5-55,SI20UBA5-52,SI-----5-21&,SI20UBD2E94","SI20UBD5-57 FS","SI20UBD5-57",92,,92,,21,,21,,64,1456,"HK1003 -Blackpoint D2 - Rev.0E DD30092021"
1-1053,SI20UBD5-58,"(RFE) FOUNDATION 20UBD03/04",5121,"HK1003-Rev.0E-3",TT_FinMile,"55902",-,-,-,0,TK_NotStart,02/06/2022,,02/06/2022,,"SI20UBD5-57 FS","SI20UBD5-57","SI--BHT7-20 FS,SI--BHT7-15 FS,SI20UBD5C-46 FS","SI--BHT7-20,SI--BHT7-15,SI20UBD5C-46",95,,95,,22,,22,,68,1456,"HK1003 -Blackpoint D2 - Rev.0E DD30092021"
1-1054,SI20PGB8-10,"(TOP-20PGB) CLOSED COOLING WATER SYSTEM",5121,"HK1003-Rev.0E-3",TT_FinMile,"55902",-,-,-,0,TK_NotStart,17/04/2023,,17/04/2023,,"SI20PAB7A15 FS,SI20PCB6H15 FS,SI20PAH6H15 FS,SI20PAH7H15 FS,SI20PCB7H15 FS,SI20PAB6A15 FS,SI--9998-21& SS,SI20PGB7H15 FS,SI20BZK7A27 FS,SI20PGB6H15 FS,SI20PGB6H17 FS,SI20BZK7C33 FS,SI20BZK7E25 FS,SI--9998-23& FS","SI20PAB7A15,SI20PCB6H15,SI20PAH6H15,SI20PAH7H15,SI20PCB7H15,SI20PAB6A15,SI--9998-21&,SI20PGB7H15,SI20BZK7A27,SI20PGB6H15,SI20PGB6H17,SI20BZK7C33,SI20BZK7E25,SI--9998-23&","SI20PGB8B25 FS","SI20PGB8B25",141,,141,,32,,32,,95,16,"HK1003 -Blackpoint D2 - Rev.0E DD30092021"
1-1055,SI20UBD5-55,"WORK PREPARATION / EXCAVATION FOUNDATION 20UBD03/04",5121,"HK1003-Rev.0E-3",TT_Task,"55902",-,-,-,0,TK_NotStart,29/04/2022,,12/05/2022,,"SI20UBD2E75 FS,SI20UBA2G75 FS,SI-----5-22 FS,SI20UBA5-59 SS,SI-----5-21& FS,SI-----5-20 FS,SI-P222-84 FS,SI-P222-128 FS,SI20UBD2E93 FS","SI20UBD2E75,SI20UBA2G75,SI-----5-22,SI20UBA5-59,SI-----5-21&,SI-----5-20,SI-P222-84,SI-P222-128,SI20UBD2E93","SI20UBD5-11 FS,SI-P222-131# FF,SI-P222-131# SS","SI20UBD5-11,SI-P222-131#,SI-P222-131#",90,,92,,21,,21,,60,1456,"HK1003 -Blackpoint D2 - Rev.0E DD30092021"
1-1056,SI20UBD5-57,"CONSTRUCTION FOUNDATION 20UBD03/04",5121,"HK1003-Rev.0E-3",TT_Task,"55902",-,-,-,0,TK_NotStart,13/05/2022,,02/06/2022,,"SI20UBD5-11 FS","SI20UBD5-11","SI20UBD5-58 FS","SI20UBD5-58",92,,95,,21,,22,,64,1456,"HK1003 -Blackpoint D2 - Rev.0E DD30092021"
1-1057,SI20UMC5A10,"(H) START PLACING FORMWORK TS FOUND. 20UMC",5121,"HK1003-Rev.0E-3",TT_Mile,"55902",-,-,-,100,TK_Complete,26/08/2021,26/08/2021,26/08/2021,26/08/2021,"SI20UMC5Y15 FS,SI--UMC2A75 FS,SI20UMC5Z46 FS,SI-----5-21& FS,SI20UMC5A10& FS","SI20UMC5Y15,SI--UMC2A75,SI20UMC5Z46,SI-----5-21&,SI20UMC5A10&","SI20UMC5A15 FS,SI20UMX5-05 FS","SI20UMC5A15,SI20UMX5-05",55,55,55,55,13,13,13,13,27,,"HK1003 -Blackpoint D2 - Rev.0E DD30092021"
1-1058,SI20UMC5A45,"(RFE) TURBOSET FOUNDATION READY 20UMC",5121,"HK1003-Rev.0E-3",TT_FinMile,"55902",-,-,-,0,TK_NotStart,28/11/2021,,28/11/2021,,"SI20UMC5A25 FS,SI20UMC5A46 FS,SI20UMC5A45& FS,SI20UMC5A15.14 FS","SI20UMC5A25,SI20UMC5A46,SI20UMC5A45&,SI20UMC5A15.14","SI20MA-6-07 FS,SI20MA-6-00 FS,SI20MKA6-55 FS,SI20MA-6-03 FS,SI20UMC5B95 FS,SI20M--6-04 FS,SI20MB-6-00 FS,SI20MBL6-05 FS,SI20UMC5A15# FF,SI20MB-6-10 FS,SI-PM-20 FS","SI20MA-6-07,SI20MA-6-00,SI20MKA6-55,SI20MA-6-03,SI20UMC5B95,SI20M--6-04,SI20MB-6-00,SI20MBL6-05,SI20UMC5A15#,SI20MB-6-10,SI-PM-20",69,,69,,16,,16,,40,944,"HK1003 -Blackpoint D2 - Rev.0E DD30092021"
1-1059,SI20MA-8-05&,"1ST. TURNING GEAR ST",5121,"HK1003-Rev.0E-3",TT_Mile,"55902",-,-,-,0,TK_NotStart,23/06/2023,,23/06/2023,,"","","SI20MA-9-05 SS","SI20MA-9-05",150,,150,,35,,35,,99,8,"HK1003 -Blackpoint D2 - Rev.0E DD30092021"
1-1060,SI20QC-2-40,"(DF) P&ID's DOSING CONTAINER AVAILABLE QC",5121,"HK1003-Rev.0E-3",TT_FinMile,"55902",-,-,-,100,TK_Complete,22/04/2021,22/04/2021,22/04/2021,22/04/2021,"SI-----1-03 FS,SI20QC-2-05 FS","SI-----1-03,SI20QC-2-05","SI20QC-2-75 FS","SI20QC-2-75",37,37,37,37,8,8,8,8,9,,"HK1003 -Blackpoint D2 - Rev.0E DD30092021"
1-1061,SP20MBL2-80,"PREPARE TEC RFQ DOC AIR INTAKE SYSTEM MBL",5121,"HK1003-Rev.0E-3",TT_Task,"55902",-,-,-,100,TK_Complete,01/03/2021,01/03/2021,21/03/2021,21/03/2021,"SI-----1-04 SS,SP20MB-3-26 SS,SI-----1-04 FS,SI--3331-35 FS,SI-----1-05 FS","SI-----1-04,SP20MB-3-26,SI-----1-04,SI--3331-35,SI-----1-05","SP20MBL2-81 FS","SP20MBL2-81",30,30,33,33,7,7,7,7,5,,"HK1003 -Blackpoint D2 - Rev.0E DD30092021"
1-1062,SI20M--6-04,"REFERENCE POINTS ON FOUNDATION & CENTRE LINE AVAILABLE (BY OFFICIAL GEOMETER)",5121,"HK1003-Rev.0E-3",TT_Mile,"55902",-,-,-,0,TK_NotStart,29/11/2021,,29/11/2021,,"SI20UMC5A45 FS","SI20UMC5A45","SI20MAG6-00 FS,SI20MKA6-55 FS,SI20MA-6-00 FS","SI20MAG6-00,SI20MKA6-55,SI20MA-6-00",69,,69,,16,,16,,40,1504,"HK1003 -Blackpoint D2 - Rev.0E DD30092021"
1-1063,SI--SA-2-10,"(DF) HEAT LOADS AVAILABLE FOR HVAC-SYSTEM SA",5121,"HK1003-Rev.0E-3",TT_FinMile,"55902",-,-,-,100,TK_Complete,12/02/2021,12/02/2021,12/02/2021,12/02/2021,"SI--SA-2-01 FF","SI--SA-2-01","SI--SA-2-27 FS","SI--SA-2-27",27,27,27,27,6,6,6,6,4,,"HK1003 -Blackpoint D2 - Rev.0E DD30092021"
1-1064,SI--HA-2-65,"(DF) PROCESS FINAL HRSG SYSTEMS",5121,"HK1003-Rev.0E-3",TT_FinMile,"55902",-,-,-,100,TK_Complete,22/04/2021,22/04/2021,22/04/2021,22/04/2021,"SI20HS-2-89 FS,SI--HA-2-59 FS","SI20HS-2-89,SI--HA-2-59","SI--HA-2-00 FS,SI--HA-2-70 SS","SI--HA-2-00,SI--HA-2-70",37,37,37,37,8,8,8,8,9,,"HK1003 -Blackpoint D2 - Rev.0E DD30092021"
1-1065,SI--3332-02,"KICK OFF PROCESS ENGINEERING",5121,"HK1003-Rev.0E-3",TT_Task,"55902",-,-,-,100,TK_Complete,01/08/2020,01/08/2020,28/08/2020,28/08/2020,"SI--3332-01 FS","SI--3332-01","SI--P--2-77 FS,SI--L--2-77 SS,SI--P--2-35 FS,SI--CKA2-00 FS,SI--P--2-05 FS,SI--G--2-20 SS,SI--G--2A05 FS,SI--P--2-35 SS,SI--L--2-35 SS,SI--L--2-05 FS,SI--6662-26 SS","SI--P--2-77,SI--L--2-77,SI--P--2-35,SI--CKA2-00,SI--P--2-05,SI--G--2-20,SI--G--2A05,SI--P--2-35,SI--L--2-35,SI--L--2-05,SI--6662-26",0,0,3,3,0,0,0,0,0,,"HK1003 -Blackpoint D2 - Rev.0E DD30092021"
1-1066,SI20MA-8-10,"(TOP-20MA) STEAM TURBINE",5121,"HK1003-Rev.0E-3",TT_FinMile,"55902",-,-,-,0,TK_NotStart,10/04/2023,,10/04/2023,,"SI20MA-6D45 FS,SI--2222-33 SS,SI20MAA6A45 FS,SI20MAD8-10 FS,SI20MA-6A60 SS,SI20MAA6A15 FS,SI20BZK7-28 FS,SI20MA-6A35 SS,SI20MA-6A11 SS,SI20MAV6-55 FS,SI20BZK7E25 FS,SI20MA-6D70 FS,SI20MAG8-10 FS,SI20MAX8-10 FS,SI20C--7L15 FS,SI20MAV8-10 FS,SI20MA-6A25 SS,SI20MAV6H15 FS,SI20BZK7C33 FS,SI20MA-6A50 SS,SI20MAN8-10 FS,SI20MAD8-26& FS,SI20MAX6A65 SS,SI20BZK7-187 FS,SI20BZK7E26 FS,SI20BZK7C34 FS,SI20MAM7A15 FS","SI20MA-6D45,SI--2222-33,SI20MAA6A45,SI20MAD8-10,SI20MA-6A60,SI20MAA6A15,SI20BZK7-28,SI20MA-6A35,SI20MA-6A11,SI20MAV6-55,SI20BZK7E25,SI20MA-6D70,SI20MAG8-10,SI20MAX8-10,SI20C--7L15,SI20MAV8-10,SI20MA-6A25,SI20MAV6H15,SI20BZK7C33,SI20MA-6A50,SI20MAN8-10,SI20MAD8-26&,SI20MAX6A65,SI20BZK7-187,SI20BZK7E26,SI20BZK7C34,SI20MAM7A15","SI20MA-8-25 FS,SI20MAY9-35 FS,SI20MA-8B25 FS","SI20MA-8-25,SI20MAY9-35,SI20MA-8B25",140,,140,,32,,32,,94,32,"HK1003 -Blackpoint D2 - Rev.0E DD30092021"
1-1067,SI20MB-4-40,"(OTD-OS) ON SITE GAS TURBINE 20MB-",5121,"HK1003-Rev.0E-3",TT_FinMile,"55902",-,-,-,0,TK_NotStart,23/07/2022,,23/07/2022,,"SP20MBK4H40 FS,SI20MB-4E25 FS,SI20MBA4-26 FS,SP20MPB4A43 FS,SP20MB-4A40 FS,SI20MBA4-40 FS,SI20MBP4A40 FS,SI20MB-4G40 FS","SP20MBK4H40,SI20MB-4E25,SI20MBA4-26,SP20MPB4A43,SP20MB-4A40,SI20MBA4-40,SI20MBP4A40,SI20MB-4G40","SI20MB-6-10 SS,SP20MBX4A40 FS","SI20MB-6-10,SP20MBX4A40",103,,103,,24,,24,,74,272,"HK1003 -Blackpoint D2 - Rev.0E DD30092021"
1-1068,SI20LDK8B25,"COLD COMMISSIONING CONDENSATE POLISHING PLANT (FOR BENSON BOILER)",5121,"HK1003-Rev.0E-3",TT_Task,"55902",-,-,-,0,TK_NotStart,29/03/2023,,02/05/2023,,"SI20LD8B110 FS,SI20LDK8B10 FS,SI-PM-40 FS,SI20TPI20A8-30 FS,SI20B--8-52 FS,SI20B--8-50 FF,SI20TPM28A8-30 FS,SI20TPM29A8-30 FS","SI20LD8B110,SI20LDK8B10,SI-PM-40,SI20TPI20A8-30,SI20B--8-52,SI20B--8-50,SI20TPM28A8-30,SI20TPM29A8-30","SI20MA-9-05 FS,SI20--P6-75 FS","SI20MA-9-05,SI20--P6-75",138,,143,,32,,33,,93,80,"HK1003 -Blackpoint D2 - Rev.0E DD30092021"
1-1069,SP20MBL2-81,"QUOTATION STAGE AIR INTAKE SYSTEM MBL",5121,"HK1003-Rev.0E-3",TT_Task,"55902",-,-,-,100,TK_Complete,22/03/2021,22/03/2021,02/05/2021,02/05/2021,"SP20MBL2-80 FS","SP20MBL2-80","SP20MBL2-05 SS,SP20MBL2-10 SS,SP20MBL2-85 FS,SP20MBL2-96 FS","SP20MBL2-05,SP20MBL2-10,SP20MBL2-85,SP20MBL2-96",33,33,39,39,7,7,9,9,6,,"HK1003 -Blackpoint D2 - Rev.0E DD30092021"
1-1070,SI20UBA2-50,"PREPARATION FOUNDATION GROUNDING DWGS UBA7xxx",5121,"HK1003-Rev.0E-3",TT_Task,"55902",-,-,-,100,TK_Complete,14/07/2021,14/07/2021,27/07/2021,27/07/2021,"SI--UBA2-69 FF,SI--BAW2-02 FS","SI--UBA2-69,SI--BAW2-02","SI--UBA2-75 FS,SI20UBX2-25 FS","SI--UBA2-75,SI20UBX2-25",49,49,51,51,11,11,12,12,21,,"HK1003 -Blackpoint D2 - Rev.0E DD30092021"
1-1071,SP--MB-2B40,"WIRING DIAGRAMS GT-AUX. (EIF)",5121,"HK1003-Rev.0E-3",TT_FinMile,"55902",-,-,-,100,TK_Complete,01/04/2021,01/04/2021,01/04/2021,01/04/2021,"SP--MB-2-85 FS","SP--MB-2-85","SP--MB-2G40 FS","SP--MB-2G40",34,34,34,34,8,8,8,8,7,,"HK1003 -Blackpoint D2 - Rev.0E DD30092021"
1-1072,SP--MB-2D40,"WIRING DIAGRAMS GT&GT-AUX. (STANDARD VALUES, SYSTEM SPECIFIC)",5121,"HK1003-Rev.0E-3",TT_FinMile,"55902",-,-,-,100,TK_Complete,01/04/2021,01/04/2021,01/04/2021,01/04/2021,"SP--MB-2-85 FS","SP--MB-2-85","SP--MB-2G40 FS","SP--MB-2G40",34,34,34,34,8,8,8,8,7,,"HK1003 -Blackpoint D2 - Rev.0E DD30092021"
1-1073,SI--2222-24,"REVISION OF OPERATING MANUAL (BHB) ON SITE",5121,"HK1003-Rev.0E-3",TT_Task,"55902",-,-,-,0,TK_NotStart,09/10/2023,,07/12/2023,,"SI--2222-23 FS","SI--2222-23","SI--2222-26 FS","SI--2222-26",166,,174,,38,,40,,99,192,"HK1003 -Blackpoint D2 - Rev.0E DD30092021"
1-1074,SI--HB-2A60,"(MS3) CONCRETE STRUCTURE FINAL DIMENSIONS, LOADS AVAILABLE HRSG",5121,"HK1003-Rev.0E-3",TT_FinMile,"55902",-,-,-,100,TK_Complete,11/02/2021,11/02/2021,11/02/2021,11/02/2021,"SI--HB-2D62 FS","SI--HB-2D62","SI--UHA2-60 FS","SI--UHA2-60",27,27,27,27,6,6,6,6,4,,"HK1003 -Blackpoint D2 - Rev.0E DD30092021"
1-1075,SI--M--2C00,"LAYOUT DOCUMENTS [initial]",5121,"HK1003-Rev.0E-3",TT_Mile,"55902",-,-,-,100,TK_Complete,02/04/2021,02/04/2021,02/04/2021,02/04/2021,"SI-----1-04 FS,SI--M--2C20 FS","SI-----1-04,SI--M--2C20","SI--M--2D20 FS","SI--M--2D20",34,34,34,34,8,8,8,8,7,,"HK1003 -Blackpoint D2 - Rev.0E DD30092021"
1-1076,SI20MPB7E81,"ELECTRICAL ERECTION WORK FOR GT ENCLOSURE 20MPB / SAM",5121,"HK1003-Rev.0E-3",TT_Task,"55902",-,-,-,0,TK_NotStart,10/12/2022,,23/12/2022,,"SI20MPB6E82 FS,SP20MPB4A43 SS,SP20MPB4A43 FS,SI20MB-6-20 FS,SI20MB-6-20 FF","SI20MPB6E82,SP20MPB4A43,SP20MPB4A43,SI20MB-6-20,SI20MB-6-20","SI20SAM8-29 FS,SI20SGJ8-21 FS,SI20BZK7D11# FF,SI20BZK7D11# SS","SI20SAM8-29,SI20SGJ8-21,SI20BZK7D11#,SI20BZK7D11#",123,,124,,28,,29,,86,1232,"HK1003 -Blackpoint D2 - Rev.0E DD30092021"
1-1077,SI20HB-6-41,"PRE-ASSEMBLY STACK INCL. INSULATION / SEC. STEEL HRSG20_1st/2nd part",5121,"HK1003-Rev.0E-3",TT_Task,"55902",-,-,-,0,TK_NotStart,25/03/2022,,28/04/2022,,"SI20HB-4D40 FS","SI20HB-4D40","SI20HB-6-43 FS,SI20HB-6-44 FS,SI20BZP7-194 SS,SI20HB-6-51 FS","SI20HB-6-43,SI20HB-6-44,SI20BZP7-194,SI20HB-6-51",85,,90,,20,,21,,53,376,"HK1003 -Blackpoint D2 - Rev.0E DD30092021"
1-1078,SI--CYA3-80,"(RFS) READY FOR SHIPMENT TELECOMMUNICATION CYA",5121,"HK1003-Rev.0E-3",TT_FinMile,"55902",-,-,-,0,TK_NotStart,24/09/2022,,24/09/2022,,"SI--CYA4-10 FS","SI--CYA4-10","SI--CYA2-05 FS,SI--CYA4-25 FS","SI--CYA2-05,SI--CYA4-25",112,,112,,26,,26,,81,136,"HK1003 -Blackpoint D2 - Rev.0E DD30092021"
1-1079,SI--CYA8-25,"COMMISSIONING TELECOMMUNICATION ENTIRE PLANT",5121,"HK1003-Rev.0E-3",TT_Task,"55902",-,-,-,0,TK_NotStart,27/05/2023,,16/06/2023,,"SI--CYA8-10 FS,SI-PM-40 FS,SI20TPI6A8-30 FS,SI20TPI21A8-30 FS,SI20CYA8-30 SS","SI--CYA8-10,SI-PM-40,SI20TPI6A8-30,SI20TPI21A8-30,SI20CYA8-30","SI--CYA8-70 FS","SI--CYA8-70",147,,149,,34,,34,,97,112,"HK1003 -Blackpoint D2 - Rev.0E DD30092021"
1-1080,SI20PAH4-25,"TRANSPORT TO SKIDDER CONDENSER TUBE CLEANING SYSTEM (BALL STRAINER) 20PAH",5121,"HK1003-Rev.0E-3",TT_Task,"55902",-,-,-,0,TK_NotStart,22/12/2021,,15/02/2022,,"SI20PAH3-80 FS","SI20PAH3-80","SI20PAH4-40 FS","SI20PAH4-40",72,,80,,16,,18,,43,952,"HK1003 -Blackpoint D2 - Rev.0E DD30092021"
1-1081,SI20LCA6A15,"ERECTION, NDT, PT PIPES / VALVES 20LCA",5121,"HK1003-Rev.0E-3",TT_Task,"55902",-,-,-,0,TK_NotStart,26/08/2022,,18/01/2023,,"SI20LCB6B41 FS,SI20LCA6M16 FS,SI20--P6A00& FS,SI20LCA6M40 FS,SI20LAC6B40 FS,SI20LCA6A16 FS,SI20MAN6E40 FS,SI20MAN6E40 FF,SI20MAG6-65 FS,SI---1P6A05 FS","SI20LCB6B41,SI20LCA6M16,SI20--P6A00&,SI20LCA6M40,SI20LAC6B40,SI20LCA6A16,SI20MAN6E40,SI20MAN6E40,SI20MAG6-65,SI---1P6A05","SI20LAC8B10 FS,SI20LD8B110 FS,SI20EKT6I15 FF,SI--LCA6H15# FF,SI20LCW6H15 FF,SI20QC-6H17 FF,SI20LCA8M10 FS,SI20LCA6A45 FS,SI20QU-6H15 FF,SI20LAC8B25 FS,SI--LCA6H15# SS,SI20MAN6H15 FF,SI20SGC6J28 SS,SI20MAG6-20# FF,SI20MAG6-64# FF,SI20MAG6-64# SS,SI20-6-16# FF,SI20-6-16# SS","SI20LAC8B10,SI20LD8B110,SI20EKT6I15,SI--LCA6H15#,SI20LCW6H15,SI20QC-6H17,SI20LCA8M10,SI20LCA6A45,SI20QU-6H15,SI20LAC8B25,SI--LCA6H15#,SI20MAN6H15,SI20SGC6J28,SI20MAG6-20#,SI20MAG6-64#,SI20MAG6-64#,SI20-6-16#,SI20-6-16#",107,,128,,25,,30,,79,184,"HK1003 -Blackpoint D2 - Rev.0E DD30092021"
1-1082,SI20UMC5Y15,"WORK PREPARATION CEP/LDK PIT 20UMC",5121,"HK1003-Rev.0E-3",TT_Task,"55902",-,-,-,100,TK_Complete,23/07/2021,23/07/2021,15/08/2021,15/08/2021,"SI20UMC5Y10 FS,SI20UMC5Z15 FS","SI20UMC5Y10,SI20UMC5Z15","SI20UMC5Y45 FS,SI20UMC5B75 FS,SI20UMC5A10 FS,SI20UMC5Y46 FS","SI20UMC5Y45,SI20UMC5B75,SI20UMC5A10,SI20UMC5Y46",50,50,54,54,11,11,12,12,22,,"HK1003 -Blackpoint D2 - Rev.0E DD30092021"
1-1083,SI20MAX6H15,"ERECTION, NDT, PT PIPES / VALVES MAX",5121,"HK1003-Rev.0E-3",TT_Task,"55902",-,-,-,0,TK_NotStart,21/01/2023,,24/02/2023,,"SI20MA-6A11 FS,SI20MAX6A65 FS,SI20MAX6-40 FS,SI20MAX6H16 FS,SI20MA-6E41 FS,SI---1P6A05 FS","SI20MA-6A11,SI20MAX6A65,SI20MAX6-40,SI20MAX6H16,SI20MA-6E41,SI---1P6A05","SI20MAX6-75 FS,SI20MAX8-10 FS,SI20MAX7H15 FS,SI20-6-16# FF,SI20-6-16# SS,SI20MAX6H17 FS","SI20MAX6-75,SI20MAX8-10,SI20MAX7H15,SI20-6-16#,SI20-6-16#,SI20MAX6H17",129,,133,,30,,31,,88,136,"HK1003 -Blackpoint D2 - Rev.0E DD30092021"
1-1084,SI20SGJ6A15,"ERECTION ECONOPAC FIRE PROTECTION / GAS DETECTION SYSTEM 20CYE/CYQ/SGJ",5121,"HK1003-Rev.0E-3",TT_Task,"55902",-,-,-,0,TK_NotStart,22/01/2023,,18/02/2023,,"SI--SG-2-05 FS,SI--B--2-68 FS,SI20BZK7F26 FF,SI20UBA7-25 FS,SI20UBA7-15 FS,SI20SGJ4-25 FS,SI20SGY7A15 FS,SI--B--2-93 FS,SI-P222-65 FS","SI--SG-2-05,SI--B--2-68,SI20BZK7F26,SI20UBA7-25,SI20UBA7-15,SI20SGJ4-25,SI20SGY7A15,SI--B--2-93,SI-P222-65","SI20CYE8-10 FS,SI20CYQ8-10 FS","SI20CYE8-10,SI20CYQ8-10",129,,133,,30,,31,,89,552,"HK1003 -Blackpoint D2 - Rev.0E DD30092021"
1-1085,SI20LBA6J70,"PT, RE-INSTALLATION PIPES / VALVES 11LBA80  (TURBOSET)",5121,"HK1003-Rev.0E-3",TT_Task,"55902",-,-,-,0,TK_NotStart,18/02/2023,,03/03/2023,,"SI20LBA6J15 FS,SI20MAX8-70 FF,SI20LBA6J71 FS,SI20LBA6J71 FF","SI20LBA6J15,SI20MAX8-70,SI20LBA6J71,SI20LBA6J71","SI20LBA8H10 FS,SI20LBB8J11 FS,SI20LBG8A10 FS,SI20LBA6J45 FF,SI20LBA8J10 FS","SI20LBA8H10,SI20LBB8J11,SI20LBG8A10,SI20LBA6J45,SI20LBA8J10",133,,134,,31,,31,,91,192,"HK1003 -Blackpoint D2 - Rev.0E DD30092021"
1-1086,SP20MKA3B25,"MANUFACTURING GENERATOR SKIDS 20MKA",5121,"HK1003-Rev.0E-3",TT_Task,"55902",-,-,-,18,TK_Active,20/08/2021,20/08/2021,01/04/2022,,"SP20MKA3-25 FF,SP--MKA2-86 FS,SI--2222-30 FS","SP20MKA3-25,SP--MKA2-86,SI--2222-30","SP20MKA3-71 FS","SP20MKA3-71",54,54,86,,12,12,20,,26,376,"HK1003 -Blackpoint D2 - Rev.0E DD30092021"
1-1087,SI--UHA2-70,"DETAIL DESIGN CONCRETE STRUCTURE UHA",5121,"HK1003-Rev.0E-3",TT_Task,"55902",-,-,-,100,TK_Complete,31/05/2021,31/05/2021,29/07/2021,29/07/2021,"SI--UHA2-78 FS,SI--UHA2-60 FF,SI--UHA2-60 FS","SI--UHA2-78,SI--UHA2-60,SI--UHA2-60","SI--UHA2-50 FF,SI--UHA2-75 FS,SI--UHA2-80 FS,SI20UVM2-70 FF,SI20USX2-41 SS","SI--UHA2-50,SI--UHA2-75,SI--UHA2-80,SI20UVM2-70,SI20USX2-41",43,43,51,51,10,10,12,12,15,,"HK1003 -Blackpoint D2 - Rev.0E DD30092021"
1-1088,SI20MKA6-12,"PLACING GENERATOR ON FOUNDATION 20MKA",5121,"HK1003-Rev.0E-3",TT_Mile,"55902",-,-,-,0,TK_NotStart,27/07/2022,,27/07/2022,,"SI20MKA6-30 FS,SI20UMC6M15 FS,SI20MKA5-25 FS,SI20MKA4-40 SS","SI20MKA6-30,SI20UMC6M15,SI20MKA5-25,SI20MKA4-40","SI20MKA6-32 FS,SI20MKA6E16 FS,SI20BAB7-15 FS,SI20MKA8-25 FS,SI20MKA6-82 FS,SI20MKW6-15 FS","SI20MKA6-32,SI20MKA6E16,SI20BAB7-15,SI20MKA8-25,SI20MKA6-82,SI20MKW6-15",103,,103,,24,,24,,75,368,"HK1003 -Blackpoint D2 - Rev.0E DD30092021"
1-1089,SI20PAA3-25,"DETAIL DESIGN / MANUFACTURING COOLING TOWER COARSE SCREEN 20PAA (MPA)",5121,"HK1003-Rev.0E-3",TT_Task,"55902",-,-,-,0,TK_Active,29/09/2021,29/09/2021,31/05/2022,,"SI20PAA2-85 FS","SI20PAA2-85","SI20PAA3B70 FS","SI20PAA3B70",60,60,95,,14,14,22,,30,1536,"HK1003 -Blackpoint D2 - Rev.0E DD30092021"
1-1090,SI20PAA3-80,"(RFS) READY FOR SHIPMENT READY FOR SHIPMENT COOLING TOWER COARSE SCREEN 20PAA",5121,"HK1003-Rev.0E-3",TT_FinMile,"55902",-,-,-,0,TK_NotStart,28/06/2022,,28/06/2022,,"SI20PAA4B10 FS","SI20PAA4B10","SI20PAA2-05 FS,SI20PAA4-25 FS,SI20PAA4-41 FS","SI20PAA2-05,SI20PAA4-25,SI20PAA4-41",99,,99,,23,,23,,71,1536,"HK1003 -Blackpoint D2 - Rev.0E DD30092021"
1-1091,SI20PAH2-65,"(DF) INPUT FOR M2 CONDENSER TUBE CLEANING SYSTEM 20PAH",5121,"HK1003-Rev.0E-3",TT_FinMile,"55902",-,-,-,100,TK_Complete,19/05/2021,19/05/2021,19/05/2021,19/05/2021,"SI20PAH3-25 FS,SI20PAH2-75 FS","SI20PAH3-25,SI20PAH2-75","SI---3P2A10 FS","SI---3P2A10",41,41,41,41,9,9,9,9,13,,"HK1003 -Blackpoint D2 - Rev.0E DD30092021"
1-1092,SI20XKA3-25,"DETAIL DESIGN / MANUFACTURING / SHOP TEST EMERGENCY DIESEL GEN.SET XKA",5121,"HK1003-Rev.0E-3",TT_Task,"55902",-,-,-,0,TK_NotStart,13/10/2021,,15/05/2022,,"SI20XKA2-85 FS","SI20XKA2-85","SI20XKA3-70 FS","SI20XKA3-70",62,,93,,14,,21,,34,535,"HK1003 -Blackpoint D2 - Rev.0E DD30092021"
1-1093,SI20XKA2-60,"(DF) INPUT FOR MS3 EMERGENCY DIESEL GEN.SET XKA",5121,"HK1003-Rev.0E-3",TT_FinMile,"55902",-,-,-,0,TK_NotStart,13/10/2021,,13/10/2021,,"SI20XKA2-85 SS,SI-----1-03 SS","SI20XKA2-85,SI-----1-03","SI20UBN2-5 FS","SI20UBN2-5",62,,62,,14,,14,,34,2120,"HK1003 -Blackpoint D2 - Rev.0E DD30092021"
1-1094,SI20QJ-4B40,"(OTD-OS) ON SITE CENTRAL GAS SUPPLY (H2,CO2) QJ_",5121,"HK1003-Rev.0E-3",TT_FinMile,"55902",-,-,-,0,TK_NotStart,09/09/2022,,09/09/2022,,"SI20QJ-4B25 FS","SI20QJ-4B25","SI20QJ-6B45 FS,SI20QJ-6B42 FS","SI20QJ-6B45,SI20QJ-6B42",109,,109,,25,,25,,80,1312,"HK1003 -Blackpoint D2 - Rev.0E DD30092021"
1-1095,SI--GM-3B80,"(RFS) READY FOR SHIPMENT SUMP PUMP GM",5121,"HK1003-Rev.0E-3",TT_FinMile,"55902",-,-,-,0,TK_NotStart,30/04/2022,,30/04/2022,,"SI--GM-4B10 FS","SI--GM-4B10","SI--GM-4B25 FS,SI20BBT2-47 FS","SI--GM-4B25,SI20BBT2-47",91,,91,,21,,21,,60,480,"HK1003 -Blackpoint D2 - Rev.0E DD30092021"
1-1096,SI20MA-6C11,"SET DOWN K-TURBINE ON BEARINGS AND PROVISIONALLY ALIGNMENT MA",5121,"HK1003-Rev.0E-3",TT_Task,"55902",-,-,-,0,TK_NotStart,04/08/2022,,05/08/2022,,"SI20MA-6C00 FS,SI20MA-6A10 FS,SI20MA-5-26 FS,SI20MA-4-40 FS,SI20SMM6-71 FS","SI20MA-6C00,SI20MA-6A10,SI20MA-5-26,SI20MA-4-40,SI20SMM6-71","SI20MA-6C15 FS,SI20MA-6A15 FS,SI20MA-6B02 FF,SI20MB-6-10 FS","SI20MA-6C15,SI20MA-6A15,SI20MA-6B02,SI20MB-6-10",104,,104,,24,,24,,76,96,"HK1003 -Blackpoint D2 - Rev.0E DD30092021"
1-1097,SI--BZP3-25,"MANUFACTURING / SHOP TEST CABLE SUPPORT SYSTEM BZP (LOT 1)",5121,"HK1003-Rev.0E-3",TT_Task,"55902",-,-,-,0,TK_NotStart,01/12/2021,,25/01/2022,,"SI--BZP2-91 FS,SI--BZP2-85 FS,SI--2222-30 FS","SI--BZP2-91,SI--BZP2-85,SI--2222-30","SI--BZP3-70 FS","SI--BZP3-70",69,,77,,16,,18,,40,144,"HK1003 -Blackpoint D2 - Rev.0E DD30092021"
1-1098,SI20MAJ6-15,"ERECTION VACUUM PUMP UNIT MAJ",5121,"HK1003-Rev.0E-3",TT_Task,"55902",-,-,-,0,TK_NotStart,03/07/2022,,16/07/2022,,"SI20MAJ6-25 FS,SI20MAJ4-40 FS,SI20UMC5C45 FS,SI20UMC5E74 FS","SI20MAJ6-25,SI20MAJ4-40,SI20UMC5C45,SI20UMC5E74","SI20MAJ6-40 SS,SI20MAJ7B15 FS,SI20MAJ8-10 FS,SI20PGB6H17 FS","SI20MAJ6-40,SI20MAJ7B15,SI20MAJ8-10,SI20PGB6H17",100,,102,,23,,23,,72,1064,"HK1003 -Blackpoint D2 - Rev.0E DD30092021"
1-1099,SI20UBX5E45,"(RFE) ROOF DECKING 20UBX",5121,"HK1003-Rev.0E-3",TT_FinMile,"55902",-,-,-,0,TK_NotStart,08/09/2022,,08/09/2022,,"SI20UBX5C15 FS","SI20UBX5C15","SI20BAC7-16 FS","SI20BAC7-16",109,,109,,25,,25,,80,520,"HK1003 -Blackpoint D2 - Rev.0E DD30092021"
1-1100,SI20UBD5-45,"(RFE) FOUNDATION 20UBD01/02",5121,"HK1003-Rev.0E-3",TT_FinMile,"55902",-,-,-,0,TK_NotStart,10/06/2022,,10/06/2022,,"SI20UBD5-65 FS,SI20UBD5-15.03 FS","SI20UBD5-65,SI20UBD5-15.03","SI20BFT7-15 FS,SI20UBD5C-49 FS,SI20BFT7-16 FS","SI20BFT7-15,SI20UBD5C-49,SI20BFT7-16",96,,96,,22,,22,,69,1064,"HK1003 -Blackpoint D2 - Rev.0E DD30092021"
1-1101,SI20GM-6H19,"ERECTION PIPES STORM SYSTEM 00GM",5121,"HK1003-Rev.0E-3",TT_Task,"55902",-,-,-,0,TK_NotStart,18/07/2022,,28/08/2022,,"SI20GM-6B40 FS,SI20GM-6E40 FS,SI--G--2-50 FS","SI20GM-6B40,SI20GM-6E40,SI--G--2-50","SI20GM-8F10 FS,SI20-6-16# FF,SI20-6-16# SS","SI20GM-8F10,SI20-6-16#,SI20-6-16#",102,,108,,23,,25,,74,1880,"HK1003 -Blackpoint D2 - Rev.0E DD30092021"
1-1102,SI20BZK7F25,"CABLING 20UBA (10x) to 20UEN AND DOSING",5121,"HK1003-Rev.0E-3",TT_Task,"55902",-,-,-,0,TK_NotStart,05/02/2023,,25/02/2023,,"SI20BZK4-42 FS,SI20BZK4-41 FS,SI--B--7-55 FS,SI--B--2-68 FS,SI20BZK7-25 FS,SI20EK-6-15 FF,SI20BZK7-25 SS,SI--B--2-93 FS,SI--BZK4-40 FS","SI20BZK4-42,SI20BZK4-41,SI--B--7-55,SI--B--2-68,SI20BZK7-25,SI20EK-6-15,SI20BZK7-25,SI--B--2-93,SI--BZK4-40","SI20EK-7-25 FF,SI20UEN5D15 FS,SI20EK-7I15 FF,SI20EK-8H13 FS,SI20BZK7D10# FF,SI20BZK7D10# SS","SI20EK-7-25,SI20UEN5D15,SI20EK-7I15,SI20EK-8H13,SI20BZK7D10#,SI20BZK7D10#",131,,134,,30,,31,,89,32,"HK1003 -Blackpoint D2 - Rev.0E DD30092021"
1-1103,SI20MAA7A15,"ELECTRICAL ERECTION PIPES / VALVES MAA-C",5121,"HK1003-Rev.0E-3",TT_Task,"55902",-,-,-,0,TK_NotStart,07/12/2022,,27/12/2022,,"SI20MAA6A15 FS,SI20BZK7C33 FF,SI20BZP7D18 FS,SI20BZP7D19 FS,SI20BZP7-5 FS,SI20BZP7-196 FS,SI20BZP7-174 FS,SI20UMY6M10 FS,SI20UMY6M11 FS,SI20UMY6M12 FS,SI--2227-68 FS,SI--BZP2-05 FS,SI--PEE7-20 FS,SI--BZP4B40 FS","SI20MAA6A15,SI20BZK7C33,SI20BZP7D18,SI20BZP7D19,SI20BZP7-5,SI20BZP7-196,SI20BZP7-174,SI20UMY6M10,SI20UMY6M11,SI20UMY6M12,SI--2227-68,SI--BZP2-05,SI--PEE7-20,SI--BZP4B40","SI20MAA6A45 FF,SI20BZK7D11# FF,SI20BZK7D11# SS","SI20MAA6A45,SI20BZK7D11#,SI20BZK7D11#",122,,125,,28,,29,,86,824,"HK1003 -Blackpoint D2 - Rev.0E DD30092021"
1-1104,SI--2222-34,"COMMISSIONING MANUAL - AUXILIARY SYSTEMS CYCLE",5121,"HK1003-Rev.0E-3",TT_Mile,"55902",-,-,-,0,TK_NotStart,22/04/2023,,22/04/2023,,"SI-----1-03 SS,SI20HA-6-56 FS","SI-----1-03,SI20HA-6-56","SI20QCC8-10 FS,SI20QCD8-10 FS","SI20QCC8-10,SI20QCD8-10",142,,142,,33,,33,,96,240,"HK1003 -Blackpoint D2 - Rev.0E DD30092021"
1-1105,SI20PAH2E60,"(DF) INPUT FOR MS3 STEEL PLATFORMS CONDENSER TUBE CLEANING SYSTEM PAH",5121,"HK1003-Rev.0E-3",TT_FinMile,"55902",-,-,-,100,TK_Complete,28/06/2021,28/06/2021,28/06/2021,28/06/2021,"SI20PAH3-25 FS,SI20PAH2-85 SS","SI20PAH3-25,SI20PAH2-85","SI--UMC2F75 FS","SI--UMC2F75",47,47,47,47,11,11,11,11,19,,"HK1003 -Blackpoint D2 - Rev.0E DD30092021"
1-1106,SI20CPA8A25,"I&C FIELD COMMISSIONING GT20",5121,"HK1003-Rev.0E-3",TT_Task,"55902",-,-,-,0,TK_NotStart,28/02/2023,,01/05/2023,,"SI20CPA8-25 SS","SI20CPA8-25","SI20M--8-65 FS","SI20M--8-65",134,,143,,31,,33,,92,368,"HK1003 -Blackpoint D2 - Rev.0E DD30092021"
1-1107,SI--3331-36,"TRANSPORT STUDY FOR HEAVY COMPONENTS",5121,"HK1003-Rev.0E-3",TT_FinMile,"55902",-,-,-,100,TK_Complete,15/04/2021,15/04/2021,15/04/2021,15/04/2021,"SI-----1-01 SS,SI--HA-2-81 FS,SI-----1-01 FS,SI-----1-05 FS,SI--LOG2-20 FS","SI-----1-01,SI--HA-2-81,SI-----1-01,SI-----1-05,SI--LOG2-20","SI--LOG2-40 FS","SI--LOG2-40",36,36,36,36,8,8,8,8,8,,"HK1003 -Blackpoint D2 - Rev.0E DD30092021"
1-1108,SI--3331-34,"TCC PACKING AND DISPATCH GUIDELINE FOR HRSG PHASE 1 AVAILABLE",5121,"HK1003-Rev.0E-3",TT_Mile,"55902",-,-,-,100,TK_Complete,05/12/2020,05/12/2020,05/12/2020,05/12/2020,"SI--HA-2-81 FS,SI--HA-2-82 FS","SI--HA-2-81,SI--HA-2-82","SI--3331-33 SS","SI--3331-33",18,18,18,18,4,4,4,4,1,,"HK1003 -Blackpoint D2 - Rev.0E DD30092021"
1-1109,SI--3331-32,"PROJECT SPECIFIC GENERAL TCCs AVAILABLE",5121,"HK1003-Rev.0E-3",TT_Mile,"55902",-,-,-,100,TK_Complete,10/01/2021,10/01/2021,10/01/2021,10/01/2021,"SI--HA-2-81 SS,SI--3331-30 SS,SI--3331-61 SS,SI--3331-31 FS","SI--HA-2-81,SI--3331-30,SI--3331-61,SI--3331-31","SI-----2F71 FS,SI--CHY2-80 FS,SI--ZTA2-75 SS,SI--EK-2-77 FS,SI20PAS2A91 SS,SI20PAA2-77 SS,SI--ZTA2A75 SS,SI20QU-2-75 FS,SI--LCA2B75 FS,SI--BFF2-15 FS,SI20LCL2B75 FS,SI--BZL2-86 FS,SI20QC-2-75 FS,SI20BTA2-15 FS,SI20BUK2-15 FS,SI--LD-2-87 FS,SI--PDB2B75 FS,SI--PCB2B75 FS,SI--PGB2D75 FS,SI--PGB2B75 FS,SI--LDK2B75 FS,SI--LCB2B75 FS,SI20LBG2C75 FS,SI20SCA2-75 FS,SI20PAH2-75 FS,SI--BFT2-15 FS,SI20XKA2-15 FS,SI--BAC2-15 FS,SI20BAT2-15 FS,SI--BAA2-15 FS,SI--SMM2-75 FS,SI20MBA2D75 FS,SI--EK-2-75 FS,SI--BBA2-15 FS,SI20BFA2-15 FS,SI--C--2-10 FS,SI--CYA2-15 FS,SI--BZL2-15 FS,SI--BZP2-14 FS,SI--BZP2-15 FS,SI--BZK2-15 FS,SI20SMG2-75 FS,SI--SG-2-43 FS,SI20SA-2-75 FS,SI--GM-2B75 FS,SI20BAW2-27 FS,SI20HS-2-87 FS,SI20HSJ3-81 FS,SI20HSJ2-94 FS,SI--UBA2G80 FS,SI--PAD2-85 FS,SI--LBF2B85 FS,SI-----2E87 FS,SI--LAC2B80 FS","SI-----2F71,SI--CHY2-80,SI--ZTA2-75,SI--EK-2-77,SI20PAS2A91,SI20PAA2-77,SI--ZTA2A75,SI20QU-2-75,SI--LCA2B75,SI--BFF2-15,SI20LCL2B75,SI--BZL2-86,SI20QC-2-75,SI20BTA2-15,SI20BUK2-15,SI--LD-2-87,SI--PDB2B75,SI--PCB2B75,SI--PGB2D75,SI--PGB2B75,SI--LDK2B75,SI--LCB2B75,SI20LBG2C75,SI20SCA2-75,SI20PAH2-75,SI--BFT2-15,SI20XKA2-15,SI--BAC2-15,SI20BAT2-15,SI--BAA2-15,SI--SMM2-75,SI20MBA2D75,SI--EK-2-75,SI--BBA2-15,SI20BFA2-15,SI--C--2-10,SI--CYA2-15,SI--BZL2-15,SI--BZP2-14,SI--BZP2-15,SI--BZK2-15,SI20SMG2-75,SI--SG-2-43,SI20SA-2-75,SI--GM-2B75,SI20BAW2-27,SI20HS-2-87,SI20HSJ3-81,SI20HSJ2-94,SI--UBA2G80,SI--PAD2-85,SI--LBF2B85,SI-----2E87,SI--LAC2B80",23,23,23,23,5,5,5,5,1,,"HK1003 -Blackpoint D2 - Rev.0E DD30092021"
1-1110,SI20BZP7-50,"ERECTION CABLE TRAYS BELOW ELECTRICAL MODULES 20UBA7920/7910",5121,"HK1003-Rev.0E-3",TT_Task,"55902",-,-,-,0,TK_NotStart,04/06/2022,,10/06/2022,,"SI--PEE7-20 FS,SI20UBF5E45 FS,SI20UBF5-17 FS,SI--BZP2-05 FS,SI--2227-68 FS,SI--BZP4B40 FS,SI--BZP2-05 SS,SI20BZP7-26 FS,SI--PEE7-20 SS,SI20UBA5-15 FS,SI20UBA5-102 FS","SI--PEE7-20,SI20UBF5E45,SI20UBF5-17,SI--BZP2-05,SI--2227-68,SI--BZP4B40,SI--BZP2-05,SI20BZP7-26,SI--PEE7-20,SI20UBA5-15,SI20UBA5-102","SI20BZK7B27 FS,SI20BZK7D25 FS,SI20BZK7A26 FF,SI20UBA7-26 FS,SI20UBA5-85 FS,SI20BZP7B10# FF,SI20BZP7B10# SS,SI20BZK7B48 FS","SI20BZK7B27,SI20BZK7D25,SI20BZK7A26,SI20UBA7-26,SI20UBA5-85,SI20BZP7B10#,SI20BZP7B10#,SI20BZK7B48",96,,96,,22,,22,,68,968,"HK1003 -Blackpoint D2 - Rev.0E DD30092021"
1-1111,SI20BZP7-100,"ERECTION CABLE TRAYS 20UMC GT AREA",5121,"HK1003-Rev.0E-3",TT_Task,"55902",-,-,-,0,TK_NotStart,01/10/2022,,14/10/2022,,"SI--PEE7-20 FS,SI--2227-68 FS,SI--BZP2-05 FS,SI--BZP4B40 FS,SI20BZP7-26 FS,SI--PEE7-20 SS,SI20MB-6-20 FS,SI20MB-6-22 FS,SI20UMC5E54 FS,SI20UMC5E50 FS","SI--PEE7-20,SI--2227-68,SI--BZP2-05,SI--BZP4B40,SI20BZP7-26,SI--PEE7-20,SI20MB-6-20,SI20MB-6-22,SI20UMC5E54,SI20UMC5E50","SI20BZK7A26 FS,SI20BZK7F26 FS,SI20BZP7-140 FS,SI20BZK7C25 FS,SI20BAW5C16 FF,SI20BZP7B10# FF,SI20BZP7B10# SS,SI20MBR7-15 FS,SI20BZK7F27 FS,SI20BZK7F27 FF,SI20BZK7F28 FS,SI20BZK7A36 FS,SI20BZK7A37 FS,SI20BZK7E27 FS,SI20BZK7E26 FS,SI-P222-66 FS,SI20BZP7-60 FS","SI20BZK7A26,SI20BZK7F26,SI20BZP7-140,SI20BZK7C25,SI20BAW5C16,SI20BZP7B10#,SI20BZP7B10#,SI20MBR7-15,SI20BZK7F27,SI20BZK7F27,SI20BZK7F28,SI20BZK7A36,SI20BZK7A37,SI20BZK7E27,SI20BZK7E26,SI-P222-66,SI20BZP7-60",113,,114,,26,,26,,82,168,"HK1003 -Blackpoint D2 - Rev.0E DD30092021"
1-1112,SI---5P2A10,"LAST SUPPLIER INPUT GROUPV (ZTB,ZTM-MAV,ZTM-MAW,ZTE/ZTP)",5121,"HK1003-Rev.0E-3",TT_FinMile,"55902",-,-,-,100,TK_Complete,31/08/2021,31/08/2021,31/08/2021,31/08/2021,"SI---4P2A10 FF,SI20QC-2-65 FS,SI--PDB2B65 FS,SI--M--2C20 SS,SI--GM-2B66 FS,SI20QU-2-65 FS,SI20SCA2-66 FS,SP20MA2B43 FS,SP20MA2B42 FS","SI---4P2A10,SI20QC-2-65,SI--PDB2B65,SI--M--2C20,SI--GM-2B66,SI20QU-2-65,SI20SCA2-66,SP20MA2B43,SP20MA2B42","SI-P2I-1 FS,SI---1P2H536 FF,SI---1P2H537 FF,SI---1P2A525 FF,SI---1P2H538 FF","SI-P2I-1,SI---1P2H536,SI---1P2H537,SI---1P2A525,SI---1P2H538",56,56,56,56,13,13,13,13,27,,"HK1003 -Blackpoint D2 - Rev.0E DD30092021"
1-1113,SI20LBG6A17,"ERECTION, NDT, PT PIPES / VALVES 20LBG",5121,"HK1003-Rev.0E-3",TT_Task,"55902",-,-,-,0,TK_NotStart,20/05/2022,,28/07/2022,,"SI---1P6A05 FS,SI20LBG6C40 FS","SI---1P6A05,SI20LBG6C40","SI20LBA8J10 FS,SI20LBA8H10 FS,SI20LBB8J11 FS,SI20--P6-73 FS,SI--LBG6H15# SS,SI20LBG8A10 FS,SI20LBG6A47 FS,SI--LBG6H15# FF,SI20--P6-77 FS,SI20-6-16# FF,SI20-6-16# SS","SI20LBA8J10,SI20LBA8H10,SI20LBB8J11,SI20--P6-73,SI--LBG6H15#,SI20LBG8A10,SI20LBG6A47,SI--LBG6H15#,SI20--P6-77,SI20-6-16#,SI20-6-16#",93,,103,,21,,24,,66,1936,"HK1003 -Blackpoint D2 - Rev.0E DD30092021"
1-1114,SI20LBG6A47,"INSULATION PIPES / VALVES FOR STEAM SYSTEM 20LBG",5121,"HK1003-Rev.0E-3",TT_Task,"55902",-,-,-,0,TK_NotStart,12/12/2022,,08/01/2023,,"SI20LBG6A17 FS,SI-P2I-15 FS,SI20LBG7A17 FF","SI20LBG6A17,SI-P2I-15,SI20LBG7A17","SI20LBA8J10 FS,SI20LBA8H10 FS,SI20LBB8J11 FS,SI20LBG8A10 FS,SI20--P6-75 FS,SI20LBG8A10 SS,SI20---6A15# FF","SI20LBA8J10,SI20LBA8H10,SI20LBB8J11,SI20LBG8A10,SI20--P6-75,SI20LBG8A10,SI20---6A15#",123,,127,,28,,29,,87,848,"HK1003 -Blackpoint D2 - Rev.0E DD30092021"
1-1115,SI20UMC5C55,"(RFE) BUILDING CLOSED 20UMC",5121,"HK1003-Rev.0E-3",TT_FinMile,"55902",-,-,-,0,TK_NotStart,10/07/2022,,10/07/2022,,"SI20UMC5B10 FS,SI20UMC5B15 FS,SI20UMC5C56 FS","SI20UMC5B10,SI20UMC5B15,SI20UMC5C56","SI--CYA8-70 FS,SI20QU-6H15 FS,SI20CY-7-15 FS,SI20GM-6H15 FS,SI20BAB7-15 FS,SI20SAM6F15 FS,SI20SCA6-15 FS,SI20UZA5-23 FS,SI20LCW6H15 FS,SI20SAM6E15 FS,SI20C--7B17 FS,SI20SGY6-15 FS,SI20QC-6H17 FS,SI20BZP7-110 FS,SI20C--7L15 FS,SI20PAH6-15 FS,SI20BAW5B16 FS,SI20MBX4-12 FS,SI20MBP6-11 FS,SI20MPB6E82 FS,SI20MA-6B00 FS,SI20PCB6H15 FS,SI20LCB6B15 FS,SI20MKA6-55 FS,SI20LCB6B10 FS,SI20MAX6-15 FS,SI20USX5-10 FS,SI20PGB6H17 FS,SI20GM-6E15 FS,SI20GHD6H15 SS,SI20BZL7F15 FS","SI--CYA8-70,SI20QU-6H15,SI20CY-7-15,SI20GM-6H15,SI20BAB7-15,SI20SAM6F15,SI20SCA6-15,SI20UZA5-23,SI20LCW6H15,SI20SAM6E15,SI20C--7B17,SI20SGY6-15,SI20QC-6H17,SI20BZP7-110,SI20C--7L15,SI20PAH6-15,SI20BAW5B16,SI20MBX4-12,SI20MBP6-11,SI20MPB6E82,SI20MA-6B00,SI20PCB6H15,SI20LCB6B15,SI20MKA6-55,SI20LCB6B10,SI20MAX6-15,SI20USX5-10,SI20PGB6H17,SI20GM-6E15,SI20GHD6H15,SI20BZL7F15",101,,101,,23,,23,,73,368,"HK1003 -Blackpoint D2 - Rev.0E DD30092021"
1-1116,SI20UMC5C15,"WALL AND ROOF CLADDING FINISHING WORKS 20UMC",5121,"HK1003-Rev.0E-3",TT_Task,"55902",-,-,-,0,TK_NotStart,11/07/2022,,14/08/2022,,"SI20UMC5B15 FS,SI20UMC5C10 FS,SI20UMC5C56 FS,SI20UMC5E76 FS,SI20UMC5E75 FS,SI20UMC5E70 FS,SI20UMC5E52 FS,SI20UMC5E58 FS,SI20UMC5E78 FS,SI20UMC5E48 FS,SI20UMC5E54 FS,SI20UMC5E60 FS,SI20UMC5E66 FS,SI20UMC5E76 FF,SI20UMC5E64 FS,SI20UMC5E56 FS,SI20UMC5E62 FS,SI20UMC5E74 FS","SI20UMC5B15,SI20UMC5C10,SI20UMC5C56,SI20UMC5E76,SI20UMC5E75,SI20UMC5E70,SI20UMC5E52,SI20UMC5E58,SI20UMC5E78,SI20UMC5E48,SI20UMC5E54,SI20UMC5E60,SI20UMC5E66,SI20UMC5E76,SI20UMC5E64,SI20UMC5E56,SI20UMC5E62,SI20UMC5E74","SI20SGA6A27 FS,SI20UMC5D35 FF,SI20BAW5B16 FS,SI20BAW5B15 FS","SI20SGA6A27,SI20UMC5D35,SI20BAW5B16,SI20BAW5B15",101,,106,,23,,24,,73,936,"HK1003 -Blackpoint D2 - Rev.0E DD30092021"
1-1117,SP20MB-2-80,"PREPARE TEC RFQ DOC GT ACCESSORY EQUIPMENT / CCR / IN-LINE COMPONENTS GT-PIPING MB",5121,"HK1003-Rev.0E-3",TT_Task,"55902",-,-,-,79,TK_Active,31/07/2021,31/07/2021,15/10/2021,,"SI-----1-04 SS,SP--MB-2C05 FS,SP--MB-2A10 FS,SI--3331-35 FS","SI-----1-04,SP--MB-2C05,SP--MB-2A10,SI--3331-35","SP20MB-2-81 FS","SP20MB-2-81",52,52,62,,12,12,14,,24,504,"HK1003 -Blackpoint D2 - Rev.0E DD30092021"
1-1118,SP20MBV4A25,"SUPPLY LUBE OIL FOR OIL FLUSHING 20MBV",5121,"HK1003-Rev.0E-3",TT_Mile,"55902",-,-,-,0,TK_NotStart,26/11/2022,,26/11/2022,,"SI-----1-04 SS","SI-----1-04","SI20MBV6-70 FS","SI20MBV6-70",121,,121,,28,,28,,85,560,"HK1003 -Blackpoint D2 - Rev.0E DD30092021"
1-1119,SI--UBH2-61,"PLANT DESIGN INPUT FOR 20UBH01/02",5121,"HK1003-Rev.0E-3",TT_FinMile,"55902",-,-,-,100,TK_Complete,29/01/2021,29/01/2021,29/01/2021,29/01/2021,"SI-----1-01 FS","SI-----1-01","SI--GM-2B86 FS,SI--GM-2B75 FS","SI--GM-2B86,SI--GM-2B75",25,25,25,25,6,6,6,6,3,,"HK1003 -Blackpoint D2 - Rev.0E DD30092021"
1-1120,SI--UBA2-60,"(MS3) CONCRETE STRUCTURE FINAL DIMENSIONS, LOADS AVAILABLE UBA7910/7920",5121,"HK1003-Rev.0E-3",TT_FinMile,"55902",-,-,-,100,TK_Complete,23/06/2021,23/06/2021,23/06/2021,23/06/2021,"SI20UBA2G60 FS,SI--M--2C20 FS,SI20UBA2G61 FS,SI20UBA2G62 FS","SI20UBA2G60,SI--M--2C20,SI20UBA2G61,SI20UBA2G62","SI--UBA2-81 FS,SI--UBA2-70 FS,SI--UBA2-81 FF,SI--UBA2-111 FS","SI--UBA2-81,SI--UBA2-70,SI--UBA2-81,SI--UBA2-111",46,46,46,46,10,10,10,10,18,,"HK1003 -Blackpoint D2 - Rev.0E DD30092021"
1-1121,SI--UBA2G80,"QUOTATION STAGE ELECTRICAL MODULES UBA",5121,"HK1003-Rev.0E-3",TT_Task,"55902",-,-,-,100,TK_Complete,01/03/2021,01/03/2021,18/05/2021,18/05/2021,"SI--UBA2G75 FS,SI--3331-32 FS","SI--UBA2G75,SI--3331-32","SI--UBA2G85 FS","SI--UBA2G85",30,30,41,41,7,7,9,9,5,,"HK1003 -Blackpoint D2 - Rev.0E DD30092021"
1-1122,SI--CHY2-85,"CONTRACT INTO FORCE PROT./SYNCHR./METERING CHA/CHY",5121,"HK1003-Rev.0E-3",TT_Mile,"55902",-,-,-,100,TK_Complete,09/09/2021,09/09/2021,09/09/2021,09/09/2021,"SI--CHY2-80 FS,SI--UBA2G85 FS","SI--CHY2-80,SI--UBA2G85","SI20CHY3-25 FS,SI20CHY3-26 FS","SI20CHY3-25,SI20CHY3-26",57,57,57,57,13,13,13,13,29,,"HK1003 -Blackpoint D2 - Rev.0E DD30092021"
1-1123,SP--B--2-52,"FINAL ELECTRICAL LOAD DATA (VEL) FOR LV (ECONOPAC)",5121,"HK1003-Rev.0E-3",TT_FinMile,"55902",-,-,-,100,TK_Complete,01/07/2021,01/07/2021,01/07/2021,01/07/2021,"SP--SGJ2-55 SS,SP--MB-2A55 FS,SP--MPB2E55 SS,SP--MB-2-87 FS,SP20MAJ2-86 FS,SP20MAV2-86 FS,SP20MAW2-86 FS,SP20MAX2-86 FS,SP20MBP2A86 FS,SP20MBL2-98 FS,SP20MKW2-86 FS,SP20MPB2A98 FS","SP--SGJ2-55,SP--MB-2A55,SP--MPB2E55,SP--MB-2-87,SP20MAJ2-86,SP20MAV2-86,SP20MAW2-86,SP20MAX2-86,SP20MBP2A86,SP20MBL2-98,SP20MKW2-86,SP20MPB2A98","SI--PM-2-60 FS,SI--B--2A55 FS","SI--PM-2-60,SI--B--2A55",47,47,47,47,11,11,11,11,19,,"HK1003 -Blackpoint D2 - Rev.0E DD30092021"
1-1124,SP--B--2-18,"PROKABEL PLANT REPORT TO I&C",5121,"HK1003-Rev.0E-3",TT_Mile,"55902",-,-,-,100,TK_Complete,06/07/2021,06/07/2021,06/07/2021,06/07/2021,"SP--B--2-50 SS,SP--B--2-16 SS,SP--B--2-12 FS","SP--B--2-50,SP--B--2-16,SP--B--2-12","SP--C--2-15 SS,SP--B--2-08 FS","SP--C--2-15,SP--B--2-08",48,48,48,48,11,11,11,11,20,,"HK1003 -Blackpoint D2 - Rev.0E DD30092021"
1-1125,SP--B--2-12,"PREPARATION OF CMI`s & INTERLOCKING DIAGRAMS",5121,"HK1003-Rev.0E-3",TT_Task,"55902",-,-,-,100,TK_Complete,04/05/2021,04/05/2021,05/07/2021,05/07/2021,"SI-----1-04 SS","SI-----1-04","SP--B--2-14 FS,SP--B--2-18 FS","SP--B--2-14,SP--B--2-18",39,39,48,48,9,9,11,11,11,,"HK1003 -Blackpoint D2 - Rev.0E DD30092021"
1-1126,SI20URD5-45,"(RFE) FOR MECHANICAL AND ELECTRICAL ERECTION 20URD",5121,"HK1003-Rev.0E-3",TT_Mile,"55902",-,-,-,0,TK_NotStart,11/03/2022,,11/03/2022,,"SI20URD5-46 FS","SI20URD5-46","SI20PAA6-15 SS,SI20PAB6A16 FS,SI20BZL7E16 FS,SI20PAC6B15 FS,SI20BAW5C22 FS,SI20UBA5-11 FS,SI20UBA5-59 FS,SI20PCC6B16 FS,SI20URD3-23 FS,SI20BAW5C17 FS","SI20PAA6-15,SI20PAB6A16,SI20BZL7E16,SI20PAC6B15,SI20BAW5C22,SI20UBA5-11,SI20UBA5-59,SI20PCC6B16,SI20URD3-23,SI20BAW5C17",83,,83,,19,,19,,52,1352,"HK1003 -Blackpoint D2 - Rev.0E DD30092021"
1-1127,SI20XKA4-40,"(OTD-OS) ON SITE EMERGENCY DIESEL GEN.SET XKA",5121,"HK1003-Rev.0E-3",TT_FinMile,"55902",-,-,-,0,TK_NotStart,08/08/2022,,08/08/2022,,"SI20XKA4-25 FS,SI20EGx4-15 FS","SI20XKA4-25,SI20EGx4-15","SI20XKA7-15 FS","SI20XKA7-15",105,,105,,24,,24,,77,520,"HK1003 -Blackpoint D2 - Rev.0E DD30092021"
1-1128,SI20UBA5B12,"(HS) START ERECTION STEEL STRUCTURE 20UBA8110/20",5121,"HK1003-Rev.0E-3",TT_Mile,"55902",-,-,-,0,TK_NotStart,28/11/2022,,28/11/2022,,"SI20UBA3B27 FS,SI20UBA5-52 FS,SI20UBA7-16 SS","SI20UBA3B27,SI20UBA5-52,SI20UBA7-16","SI20UBA5B17 FS","SI20UBA5B17",121,,121,,28,,28,,86,80,"HK1003 -Blackpoint D2 - Rev.0E DD30092021"
1-1129,SI20UBA5B17,"ERECTION STEEL PLATFORMS 20UBA8110/20",5121,"HK1003-Rev.0E-3",TT_Task,"55902",-,-,-,0,TK_NotStart,28/11/2022,,11/12/2022,,"SI20UBA5B12 FS","SI20UBA5B12","SI20UBA5B46 FS","SI20UBA5B46",121,,123,,28,,28,,86,80,"HK1003 -Blackpoint D2 - Rev.0E DD30092021"
1-1130,SI20UBA3B27,"FABRICATION DESIGN FABRICATION TRANSPORT STEEL STRUCTURE 20UBA8110/20",5121,"HK1003-Rev.0E-3",TT_Task,"55902",-,-,-,0,TK_NotStart,22/08/2022,,27/11/2022,,"SI--UBA2H75 FS,SI20UBA3B25 SS","SI--UBA2H75,SI20UBA3B25","SI20UBA5B12 FS","SI20UBA5B12",107,,121,,25,,28,,78,80,"HK1003 -Blackpoint D2 - Rev.0E DD30092021"
1-1131,SI20MB-9-15,"1ST. IGNITION GT20",5121,"HK1003-Rev.0E-3",TT_Mile,"55902",-,-,-,0,TK_NotStart,01/07/2023,,01/07/2023,,"SI20CYA8-30 FS,SI--2226-56 FS,SI20MBH8-25 FS,SI20PAD8-45 FS,SI--SGM6-15 FS,SI20B--8-50 SS,SI20UMC5D50 FS,SI--CKA2-08 FS,SI20MB-8-25 FS,SI20MBA8E25 FS,SI20MBA9-55 SS,SI20MB-9-02& SS,SI20S--8-25 FS,SI20MB-9A15& SS,SI20MB-8E25 FS,SI20MB-9-15& SS,SI20SMG6-19 FS,SI20MKA9-41 FS,SI20PAD8-55 FS,SI20SGM8-25 FS,SI20BZL8-25 FS,SI20CYQ8-25 FS,SI20HA-8-65 FS,SI20EK-8-46 FS,SI20PAD8-56 FS,SI20MB-9-05 FS,SI20CPC8A30 FS,SI20L--6A80 FS,SI--2222-23 FS,SI-P222-130 FS,SI20UZJ-99 FS,SI--CYA8-70 FS,SI20MBV8-15 FS,SI20MBV8-155 FS,SI20HA-6A49 FS,SI20SCA8-17 FS,SI20CFE8-36 FS,SI20HSJ8-26 FS,SI20MKC8-76 FS,SI20MKC8-76 SS,SI20UBA8-50 FS,SI20SGC8-27 FS,SI20SGC8-33 FS,SI20EKT6I15 FS,SI-----8-07& FS,SI20SGC8-34 FS,SI20SGA8-26 FS,SI20PCB8M26 FS,SI20HA-6-70& FS,SI20BBA8-37 FS,SI20CPD8-35 FS,SI20CHA8-11 FS,SI20MKA8-10 FS,SI20CH-8-25 FS,SI20BBA8-35 FS,SI-PM-40 FS,SI20B--8-50 FS,SI20TPM1A8-30 FS,SI20TPM1B8-30 FS,SI--EK-8-08 FS,SI-P222-141 FS,SI20TPM7A8-30 FS,SI20TPM7B8-30 FS,SI20TPM8A8-30 FS,SI20TPM13A8-30 FS,SI20TPM13B8-30 FS,SI20TPM14A8-30 FS,SI20TPM14B8-30 FS,SI20TPM17A8-30 FS,SI20TPM18A8-30 FS,SI20BBA7-54 FS,SI20BZK7B28 FS,SI20M--8-67 FS,SI-P222-172 FS,SI20BBA7-58 FS,SI20MBX8-25 FS,SI20BZK7F29 FS,SP--B--2-58 FS,SI20B--8-53 FS,SI20E--7-35& FS","SI20CYA8-30,SI--2226-56,SI20MBH8-25,SI20PAD8-45,SI--SGM6-15,SI20B--8-50,SI20UMC5D50,SI--CKA2-08,SI20MB-8-25,SI20MBA8E25,SI20MBA9-55,SI20MB-9-02&,SI20S--8-25,SI20MB-9A15&,SI20MB-8E25,SI20MB-9-15&,SI20SMG6-19,SI20MKA9-41,SI20PAD8-55,SI20SGM8-25,SI20BZL8-25,SI20CYQ8-25,SI20HA-8-65,SI20EK-8-46,SI20PAD8-56,SI20MB-9-05,SI20CPC8A30,SI20L--6A80,SI--2222-23,SI-P222-130,SI20UZJ-99,SI--CYA8-70,SI20MBV8-15,SI20MBV8-155,SI20HA-6A49,SI20SCA8-17,SI20CFE8-36,SI20HSJ8-26,SI20MKC8-76,SI20MKC8-76,SI20UBA8-50,SI20SGC8-27,SI20SGC8-33,SI20EKT6I15,SI-----8-07&,SI20SGC8-34,SI20SGA8-26,SI20PCB8M26,SI20HA-6-70&,SI20BBA8-37,SI20CPD8-35,SI20CHA8-11,SI20MKA8-10,SI20CH-8-25,SI20BBA8-35,SI-PM-40,SI20B--8-50,SI20TPM1A8-30,SI20TPM1B8-30,SI--EK-8-08,SI-P222-141,SI20TPM7A8-30,SI20TPM7B8-30,SI20TPM8A8-30,SI20TPM13A8-30,SI20TPM13B8-30,SI20TPM14A8-30,SI20TPM14B8-30,SI20TPM17A8-30,SI20TPM18A8-30,SI20BBA7-54,SI20BZK7B28,SI20M--8-67,SI-P222-172,SI20BBA7-58,SI20MBX8-25,SI20BZK7F29,SP--B--2-58,SI20B--8-53,SI20E--7-35&","SI20MBA9-25 FS,SI20MB-9-20 FS,SI20MKA9-35 SS,SI-PM-45 FS,SI20MKA8-72 FS","SI20MBA9-25,SI20MB-9-20,SI20MKA9-35,SI-PM-45,SI20MKA8-72",152,,152,,35,,35,,99,0,"HK1003 -Blackpoint D2 - Rev.0E DD30092021"
1-1132,SI--HA-2-92,"(DF) THERMODYNAMIC FOR HRSG / FINALIZATION HBDs FOR ALL CASES",5121,"HK1003-Rev.0E-3",TT_FinMile,"55902",-,-,-,100,TK_Complete,11/12/2020,11/12/2020,11/12/2020,11/12/2020,"SI--HA-2-82 FS,SI--HA-2A86 FS,SI-----1-01 SS,SI--HA-2-81 FS","SI--HA-2-82,SI--HA-2A86,SI-----1-01,SI--HA-2-81","SI--HA-2-83 FF,SI--HA-2-85 SS,SI20HA-3C25 FS,SI20HA-3-15# FF,SI20HA-3-15# FS","SI--HA-2-83,SI--HA-2-85,SI20HA-3C25,SI20HA-3-15#,SI20HA-3-15#",18,18,18,18,4,4,4,4,1,,"HK1003 -Blackpoint D2 - Rev.0E DD30092021"
1-1133,SI20HB-4C40,"(OTD-OS) ON SITE SECONDARY STEEL STRUCTURE HRSG20_Last Part",5121,"HK1003-Rev.0E-3",TT_FinMile,"55902",-,-,-,0,TK_NotStart,27/02/2022,,27/02/2022,,"SI20HB-4C25 FS","SI20HB-4C25","SI20HB-6C23 FS,SI20HB-6-40 FS","SI20HB-6C23,SI20HB-6-40",82,,82,,19,,19,,51,1368,"HK1003 -Blackpoint D2 - Rev.0E DD30092021"
1-1134,SI20HB-3C80,"(RFS) READY FOR SHIPMENT HRSG20 SECONDARY STEEL STRUCTURE HRSG20_Last Part",5121,"HK1003-Rev.0E-3",TT_FinMile,"55902",-,-,-,0,TK_NotStart,28/01/2022,,28/01/2022,,"SI20HB-4B12 FS","SI20HB-4B12","SI20HB-4C25 FS","SI20HB-4C25",77,,77,,18,,18,,47,1368,"HK1003 -Blackpoint D2 - Rev.0E DD30092021"
1-1135,SI20HB-6-42,"ERECTION STACK DAMPER HRSG20",5121,"HK1003-Rev.0E-3",TT_Task,"55902",-,-,-,0,TK_NotStart,14/07/2022,,20/07/2022,,"SI20HB-4D40 FS,SI20HB-6-49 FS","SI20HB-4D40,SI20HB-6-49","SI20HB-8-25 FS,SI20HB-8-12 FS,SI20HB-6-45 FS,SI20HB-6-38 FS,SI20HB-6-40 FS","SI20HB-8-25,SI20HB-8-12,SI20HB-6-45,SI20HB-6-38,SI20HB-6-40",101,,102,,23,,23,,73,1696,"HK1003 -Blackpoint D2 - Rev.0E DD30092021"
1-1136,SI20BAW5C21,"ERECTION LIGHTNING PROTECTION BOP",5121,"HK1003-Rev.0E-3",TT_Task,"55902",-,-,-,0,TK_NotStart,26/09/2022,,23/10/2022,,"SI20BAW3-25 FS,SI20EK-7-15 FF","SI20BAW3-25,SI20EK-7-15","SI20BAW5A18 FF,SI--BAW8B10 FS","SI20BAW5A18,SI--BAW8B10",112,,116,,26,,27,,82,1312,"HK1003 -Blackpoint D2 - Rev.0E DD30092021"
1-1137,SI20BAW5C22,"ERECTION LIGHTNING PROTECTION COOLING TOWER AREA (20URA/URD/UBA8110/20/UBD03/04)",5121,"HK1003-Rev.0E-3",TT_Task,"55902",-,-,-,0,TK_NotStart,24/03/2023,,24/05/2023,,"SI20BAW3-25 FS,SI20URD5-45 FS,SI20PAC6-06 FS,SI20PAS6B15 FS,SI20PAD6-43 FS","SI20BAW3-25,SI20URD5-45,SI20PAC6-06,SI20PAS6B15,SI20PAD6-43","SI-----1-09 FS,SI--BAW8-10 FS,SI20BZK7D11# FF","SI-----1-09,SI--BAW8-10,SI20BZK7D11#",137,,146,,32,,34,,93,312,"HK1003 -Blackpoint D2 - Rev.0E DD30092021"
1-1138,SI20CPD8-36,"COMMISSIONING ET200 STATIONS AUXILIARY/ANCILLIARY CPD (BAT)",5121,"HK1003-Rev.0E-3",TT_Task,"55902",-,-,-,0,TK_NotStart,28/02/2023,,13/03/2023,,"SI--BRU8-21 SS,SI20CPD8-11 FS,SI-PM-40 FS,SI20CJ-8-25 SS","SI--BRU8-21,SI20CPD8-11,SI-PM-40,SI20CJ-8-25","SI20BBA8-25 FS,SI20CH-8A25 FS,SI20CPD8-37 FS,SI20CPA8-25 SS,SI20CPB8-25 FS,SI20CPD8-35 FS,SI20UBH8-27 FS","SI20BBA8-25,SI20CH-8A25,SI20CPD8-37,SI20CPA8-25,SI20CPB8-25,SI20CPD8-35,SI20UBH8-27",134,,136,,31,,31,,92,16,"HK1003 -Blackpoint D2 - Rev.0E DD30092021"
1-1139,SI20CPD8-37,"I&C FIELD COMMISSIONING AUX. POWER (BAT)",5121,"HK1003-Rev.0E-3",TT_Task,"55902",-,-,-,0,TK_NotStart,14/03/2023,,27/03/2023,,"SI20CPD8-36 FS","SI20CPD8-36","SI20B--8-50 FS,SI20CH-8A25 FS","SI20B--8-50,SI20CH-8A25",136,,138,,31,,32,,92,16,"HK1003 -Blackpoint D2 - Rev.0E DD30092021"
1-1140,SI--EK-2-80,"QUOTATION STAGE GAS FINAL FILTER/ PREHEATER 20EKG",5121,"HK1003-Rev.0E-3",TT_Task,"55902",-,-,-,100,TK_Complete,26/03/2021,26/03/2021,27/06/2021,27/06/2021,"SI--EK-2-75 FS,SI--EK-2-20 FS,SI--3332-76 FS","SI--EK-2-75,SI--EK-2-20,SI--3332-76","SI--EK-2-85 FS","SI--EK-2-85",33,33,47,47,7,7,11,11,7,,"HK1003 -Blackpoint D2 - Rev.0E DD30092021"
1-1141,SI--BFT2-85,"CONTRACT INTO FORCE LV-TRANSFORMERS BFT",5121,"HK1003-Rev.0E-3",TT_Mile,"55902",-,-,-,100,TK_Complete,22/09/2021,22/09/2021,22/09/2021,22/09/2021,"SI--BFT2-80 FS","SI--BFT2-80","SI20BFT3-25 FS","SI20BFT3-25",59,59,59,59,13,13,13,13,30,,"HK1003 -Blackpoint D2 - Rev.0E DD30092021"
1-1142,SI20MBL7-25,"E- AND I&C- ERECTION AIR INTAKE SYSTEM 20MBL",5121,"HK1003-Rev.0E-3",TT_Task,"55902",-,-,-,0,TK_NotStart,11/12/2022,,07/01/2023,,"SI--PEI7-20 FS,SI20MBL6-20 SS,SI20BZP7-150 FS","SI--PEI7-20,SI20MBL6-20,SI20BZP7-150","SI20MBL8-10 FS,SI20BZK7F26 FS,SI20BZK7D10# FF,SI20BZK7D10# SS,SI20BZK7D11# FF,SI20BZK7D11# SS","SI20MBL8-10,SI20BZK7F26,SI20BZK7D10#,SI20BZK7D10#,SI20BZK7D11#,SI20BZK7D11#",123,,127,,28,,29,,86,328,"HK1003 -Blackpoint D2 - Rev.0E DD30092021"
1-1143,SI20MBL6-05,"PLACING GT AIR INTAKE LOWER PART 20MBL",5121,"HK1003-Rev.0E-3",TT_Task,"55902",-,-,-,0,TK_NotStart,01/08/2022,,03/08/2022,,"SP20MBL3B80 FS,SI20MB-6-15& SS,SI20MBL6-06 FS,SI20UMC5A45 FS","SP20MBL3B80,SI20MB-6-15&,SI20MBL6-06,SI20UMC5A45","SI20MBL6-15 FS,SI20MB-6-10 FS","SI20MBL6-15,SI20MB-6-10",104,,104,,24,,24,,76,184,"HK1003 -Blackpoint D2 - Rev.0E DD30092021"
1-1144,SI20MAJ4-40,"(OTD-OS) ON SITE AIR REMOVAL SYSTEM 20MAJ",5121,"HK1003-Rev.0E-3",TT_FinMile,"55902",-,-,-,0,TK_NotStart,09/05/2022,,09/05/2022,,"SI20MAJ4-25 FS","SI20MAJ4-25","SI20MAJ6-15 FS,SI20MAJ6-25 FS","SI20MAJ6-15,SI20MAJ6-25",92,,92,,21,,21,,64,1184,"HK1003 -Blackpoint D2 - Rev.0E DD30092021"
1-1145,SI--L--2-28,"DATA MANAGEMENT L- SYSTEMS",5121,"HK1003-Rev.0E-3",TT_Task,"55902",-,-,-,100,TK_Complete,05/05/2021,05/05/2021,06/07/2021,06/07/2021,"SI--L--2-65 SS","SI--L--2-65","SI--C--2C55 FS,SI--L--2-78 FS,SI--L--2-70 FS","SI--C--2C55,SI--L--2-78,SI--L--2-70",39,39,48,48,9,9,11,11,11,,"HK1003 -Blackpoint D2 - Rev.0E DD30092021"
1-1146,SI20PAH2-85,"CONTRACT INTO FORCE CONDENSER TUBE CLEANING SYSTEM 20PAH",5121,"HK1003-Rev.0E-3",TT_Mile,"55902",-,-,-,100,TK_Complete,15/05/2021,15/05/2021,15/05/2021,15/05/2021,"SI--PDB2B85 SS,SI20PAH2-80 FS","SI--PDB2B85,SI20PAH2-80","SI20PAH3-25 FS,SI20PAH3-26 FS,SI20PAH2E60 SS,SI20PAH2-87 FS","SI20PAH3-25,SI20PAH3-26,SI20PAH2E60,SI20PAH2-87",41,41,41,41,9,9,9,9,12,,"HK1003 -Blackpoint D2 - Rev.0E DD30092021"
1-1147,SI20SGJ4-25,"TRANSPORT FF SYSTEM CO2 / GAS DETECTION 20SGJ/CYQ",5121,"HK1003-Rev.0E-3",TT_Task,"55902",-,-,-,0,TK_NotStart,26/02/2022,,22/04/2022,,"SP20SGJ4-80 FS","SP20SGJ4-80","SI20SGM6-15 FS,SI20SGJ6A15 FS","SI20SGM6-15,SI20SGJ6A15",82,,89,,19,,20,,51,1736,"HK1003 -Blackpoint D2 - Rev.0E DD30092021"
1-1148,SI--2222-71,"HRSG NOISE PROTECTION DATA AVAILABLE",5121,"HK1003-Rev.0E-3",TT_Mile,"55902",-,-,-,100,TK_Complete,19/02/2021,19/02/2021,19/02/2021,19/02/2021,"SI--HA-2-81 FS,SI--HA-2-99 FS,SI--2222-70 SS","SI--HA-2-81,SI--HA-2-99,SI--2222-70","SI--PM-2-30 FS,SI--2222-133 FS","SI--PM-2-30,SI--2222-133",28,28,28,28,6,6,6,6,5,,"HK1003 -Blackpoint D2 - Rev.0E DD30092021"
1-1149,SI--CP-4-25,"TRANSPORT BOP I&C FIELD CABINETS",5121,"HK1003-Rev.0E-3",TT_Task,"55902",-,-,-,0,TK_NotStart,17/08/2022,,11/10/2022,,"SI--CP-3-80 FS,SI--C--3E80 FS","SI--CP-3-80,SI--C--3E80","SI20C--7B15 FS,SI20C--7B17 FS","SI20C--7B15,SI20C--7B17",106,,114,,24,,26,,78,304,"HK1003 -Blackpoint D2 - Rev.0E DD30092021"
1-1150,SI20GHD8A35,"FINAL COLD COMMISSIONING SERVICE WATER DISTRIBUTION SYSTEM GHD",5121,"HK1003-Rev.0E-3",TT_Task,"55902",-,-,-,0,TK_NotStart,30/04/2023,,04/05/2023,,"SI20GHD8A25 FS,SI20TPM6B8-30 FS,SI20TPM6A8-30 FS","SI20GHD8A25,SI20TPM6B8-30,SI20TPM6A8-30","SI20GHD8A50 FS","SI20GHD8A50",143,,143,,33,,33,,96,64,"HK1003 -Blackpoint D2 - Rev.0E DD30092021"
1-1151,SI20MKA8-10,"(TOP-20MKA) GENERATOR SYSTEM",5121,"HK1003-Rev.0E-3",TT_FinMile,"55902",-,-,-,0,TK_NotStart,25/04/2023,,25/04/2023,,"SI20MKA6F15 FS,SI20MKA7-15 FS,SI20BAB7-15 FS,SI20BZK7A27 FS,SI20MKA6F08 FS,SI20PGB6H17 FS,SI20MKA6-80 FS,SI20MKA6-80 FF,SI20MBA8-23& FS,SI20BZK7F27 FS,SI20BZK7-25 FS,SI20BZK4-41 FS,SI--B--7-55 FS,SI--B--2-68 FS,SI20BZP7-110 FS,SI20UBA4-42 FS,SI--B--2-93 FS,SI20MKA7A15 FS,SI20MKC7-16 FS","SI20MKA6F15,SI20MKA7-15,SI20BAB7-15,SI20BZK7A27,SI20MKA6F08,SI20PGB6H17,SI20MKA6-80,SI20MKA6-80,SI20MBA8-23&,SI20BZK7F27,SI20BZK7-25,SI20BZK4-41,SI--B--7-55,SI--B--2-68,SI20BZP7-110,SI20UBA4-42,SI--B--2-93,SI20MKA7A15,SI20MKC7-16","SI20MKA8-25 FS,SI20MA-9-05 SS,SI20MKA8-70 FS,SI20M--9-70 FS,SI20MB-9-15 FS,SI20MKA9-35 FS","SI20MKA8-25,SI20MA-9-05,SI20MKA8-70,SI20M--9-70,SI20MB-9-15,SI20MKA9-35",142,,142,,33,,33,,96,136,"HK1003 -Blackpoint D2 - Rev.0E DD30092021"
1-1152,SI20ULA5-10,"(H) START PLACING FORMWORK 20ULA",5121,"HK1003-Rev.0E-3",TT_Mile,"55902",-,-,-,0,TK_NotStart,12/10/2021,,12/10/2021,,"SI-----5-21& FS,SI20ULA5-05.01 FS","SI-----5-21&,SI20ULA5-05.01","SI20ULA5-15 FS,SI20ULA5-15.00 FS","SI20ULA5-15,SI20ULA5-15.00",62,,62,,14,,14,,33,272,"HK1003 -Blackpoint D2 - Rev.0E DD30092021"
1-1153,SI20UHX5-45,"(RFE) FOUNDATION 20UHX",5121,"HK1003-Rev.0E-3",TT_FinMile,"55902",-,-,-,0,TK_NotStart,22/02/2022,,22/02/2022,,"SI20UHX5-15 FS,SI20UHX2-43 FS,SI20UHX5-10.03 FS","SI20UHX5-15,SI20UHX2-43,SI20UHX5-10.03","SI20QU-6-15 FS","SI20QU-6-15",81,,81,,19,,19,,50,3056,"HK1003 -Blackpoint D2 - Rev.0E DD30092021"
1-1154,SI20UHX5-15,"CONSTRUCTION FOUNDATION 20UHX",5121,"HK1003-Rev.0E-3",TT_Task,"55902",-,-,-,0,TK_NotStart,03/02/2022,,19/02/2022,,"SI20UHX5-10 FS","SI20UHX5-10","SI20UHX5-45 FS","SI20UHX5-45",78,,81,,18,,18,,47,3080,"HK1003 -Blackpoint D2 - Rev.0E DD30092021"
1-1155,SI20UHX5-10,"(H) START PLACING FORMWORK 20UHX",5121,"HK1003-Rev.0E-3",TT_Mile,"55902",-,-,-,0,TK_NotStart,03/02/2022,,03/02/2022,,"SI20UHX5-05 FS,SI-----5-21& FS,SI20UHX2-44 FS","SI20UHX5-05,SI-----5-21&,SI20UHX2-44","SI20UHX5-15 FS,SI20UHX5-10.00 FS","SI20UHX5-15,SI20UHX5-10.00",78,,78,,18,,18,,47,3056,"HK1003 -Blackpoint D2 - Rev.0E DD30092021"
1-1156,SI20UHX5-05,"WORK PREPARATION, EXCAVATION 20UHX",5121,"HK1003-Rev.0E-3",TT_Task,"55902",-,-,-,0,TK_NotStart,27/01/2022,,02/02/2022,,"SI20UHX2-40 FS,SI20UHA5-05 FS,SI-----5-22 FS,SI-----5-21& FS,SI-----5-20 FS,SI20UHX2-35 FS,SI20UBA5-45 SS,SI-P222-84 FS,SI20UHX2-45 FS","SI20UHX2-40,SI20UHA5-05,SI-----5-22,SI-----5-21&,SI-----5-20,SI20UHX2-35,SI20UBA5-45,SI-P222-84,SI20UHX2-45","SI20UHX5-10 FS,SI-P222-131# FF,SI-P222-131# SS","SI20UHX5-10,SI-P222-131#,SI-P222-131#",77,,78,,18,,18,,47,3056,"HK1003 -Blackpoint D2 - Rev.0E DD30092021"
1-1157,SI20QC-6H17,"ERECTION, NDT, PT / VALVES DOSING 20QC",5121,"HK1003-Rev.0E-3",TT_Task,"55902",-,-,-,0,TK_NotStart,04/02/2023,,03/03/2023,,"SI---5P6A09 FS,SI20LBA6J15 FF,SI20QC-4-40 FS,SI20LBA6H15 FF,SI20LCA6A15 FF,SI20QC-6-40 FS,SI20UMC5C55 FS,SI20LBA6J71 FS","SI---5P6A09,SI20LBA6J15,SI20QC-4-40,SI20LBA6H15,SI20LCA6A15,SI20QC-6-40,SI20UMC5C55,SI20LBA6J71","SI20QCD8-10 FS,SI20--P6-75 FS,SI20QCC8-10 FS,SI20QU-6H15 SS,SI20QCB8-10 FS,SI20-6-16# FF,SI20-6-16# SS","SI20QCD8-10,SI20--P6-75,SI20QCC8-10,SI20QU-6H15,SI20QCB8-10,SI20-6-16#,SI20-6-16#",131,,134,,30,,31,,89,320,"HK1003 -Blackpoint D2 - Rev.0E DD30092021"
1-1158,SI20MA-6A12,"ASSEMBLY OF TEMPORARY/FINAL HP/IP-VALVE SUPPORTS (OPTIONAL)",5121,"HK1003-Rev.0E-3",TT_Task,"55902",-,-,-,0,TK_NotStart,06/08/2022,,12/08/2022,,"SI20MA-6A11 FS","SI20MA-6A11","SI20MA-6A15 FS,SI20MA-6A16# SS,SI20MA-6A20 FS","SI20MA-6A15,SI20MA-6A16#,SI20MA-6A20",105,,105,,24,,24,,77,616,"HK1003 -Blackpoint D2 - Rev.0E DD30092021"
1-1159,SI20MA-6A35,"HP-VALVE READY FOR PRE-ASSEMBLING LBA10- PIPING",5121,"HK1003-Rev.0E-3",TT_Mile,"55902",-,-,-,0,TK_NotStart,24/08/2022,,24/08/2022,,"SI20MA-6A15 FS,SI20MA-6C55 FS,SI20MA-4-44 FS","SI20MA-6A15,SI20MA-6C55,SI20MA-4-44","SI20MA-8-10 SS,SI20LBA6H15 FS,SI11LBA6H71 FS,SI20LBA6J71 FS","SI20MA-8-10,SI20LBA6H15,SI11LBA6H71,SI20LBA6J71",107,,107,,25,,25,,78,584,"HK1003 -Blackpoint D2 - Rev.0E DD30092021"
1-1160,SI20MA-6A11,"BYPASS VALVES READY FOR PRE-ASSEMBLING LBA80/LBB-PIPING",5121,"HK1003-Rev.0E-3",TT_Mile,"55902",-,-,-,0,TK_NotStart,06/08/2022,,06/08/2022,,"SI20MAN6-15 FS","SI20MAN6-15","SI20MA-6A12 FS,SI20LBA6J15 FS,SI20MAN6H15 FS,SI20MAX6H15 FS,SI20MAN6-36 FS,SI20MA-8-10 SS,SI20MAG6-46 FS,SI20LBB6J17 FS,SI20MAX6H16 FS","SI20MA-6A12,SI20LBA6J15,SI20MAN6H15,SI20MAX6H15,SI20MAN6-36,SI20MA-8-10,SI20MAG6-46,SI20LBB6J17,SI20MAX6H16",105,,105,,24,,24,,77,184,"HK1003 -Blackpoint D2 - Rev.0E DD30092021"
1-1161,SI20BZK7A27,"CABLING (E AND I&C CABLES) GENERATOR 20",5121,"HK1003-Rev.0E-3",TT_Task,"55902",-,-,-,0,TK_NotStart,16/10/2022,,12/11/2022,,"SI20BZK7-25 FS,SI20BZK4-41 FS,SI--B--7-55 FS,SI20MKA6-18 FS,SI20UBA7-104 FF,SI20BZP7-110 FS,SI20BZK7E25 SS,SI20UBA7-17 FF,SI20UBA4-42 FS,SI--B--2-68 FS,SI20BZK7-25 SS,SI--B--2-93 FS","SI20BZK7-25,SI20BZK4-41,SI--B--7-55,SI20MKA6-18,SI20UBA7-104,SI20BZP7-110,SI20BZK7E25,SI20UBA7-17,SI20UBA4-42,SI--B--2-68,SI20BZK7-25,SI--B--2-93","SI20MKA6-14 SS,SI20PGB8-10 FS,SI20MKA7-15 FS,SI20MKA8-10 FS,SI20UMC5D50 FS,SI--2226-55 FS,SI--2222-35 FS,SI20CPB8-25 FS,SI20BZK7D10# FF,SI20BZK7D10# SS,SI20CPA8-10 FS","SI20MKA6-14,SI20PGB8-10,SI20MKA7-15,SI20MKA8-10,SI20UMC5D50,SI--2226-55,SI--2222-35,SI20CPB8-25,SI20BZK7D10#,SI20BZK7D10#,SI20CPA8-10",115,,119,,26,,27,,83,456,"HK1003 -Blackpoint D2 - Rev.0E DD30092021"
1-1162,SI20MKA6-37,"FINAL ALIGNMENT ROTOR ST20/GEN20 COMPLETE 20MKA",5121,"HK1003-Rev.0E-3",TT_Mile,"55902",-,-,-,0,TK_NotStart,31/01/2023,,31/01/2023,,"SI20MA-6B35 FS","SI20MA-6B35","SI20MKA6-81 FS,SI20MAV6-55 FS,SI20BAW5B15 SS","SI20MKA6-81,SI20MAV6-55,SI20BAW5B15",130,,130,,30,,30,,89,16,"HK1003 -Blackpoint D2 - Rev.0E DD30092021"
1-1163,SI20MBQ6H15,"ERECTION, NDT, PT / VALVES IGN. GAS PIPES 20MBQ",5121,"HK1003-Rev.0E-3",TT_Task,"55902",-,-,-,0,TK_NotStart,07/01/2023,,10/03/2023,,"SI20MBA6F15 FS,SI20MB-6-25 FF,SI20MB-6A15 FS,SI20MB-6-40 FS","SI20MBA6F15,SI20MB-6-25,SI20MB-6A15,SI20MB-6-40","SI20MBQ6H45 FF,SI20-6-16# FF,SI20-6-16# SS","SI20MBQ6H45,SI20-6-16#,SI20-6-16#",127,,135,,29,,31,,88,224,"HK1003 -Blackpoint D2 - Rev.0E DD30092021"
1-1164,SI--CYA2-15,"BASIC DESIGN / SPECIFICATION / PLANTLAYOUT DWGS BOQ TELECOMMUNICATION CYA",5121,"HK1003-Rev.0E-3",TT_Task,"55902",-,-,-,21,TK_Active,12/09/2021,12/09/2021,04/12/2021,,"SI--3331-32 FS,SI--3332-26 FS,SI-----1-03 FS,SI-----1-05 FS","SI--3331-32,SI--3332-26,SI-----1-03,SI-----1-05","SI--CYA2-75 FS,SI--CYA2-86 FS","SI--CYA2-75,SI--CYA2-86",58,58,70,,13,13,16,,29,136,"HK1003 -Blackpoint D2 - Rev.0E DD30092021"
1-1165,SI--CYA8-70,"(CCC) TELECOMMUNICATION ENTIRE PLANT",5121,"HK1003-Rev.0E-3",TT_FinMile,"55902",-,-,-,0,TK_NotStart,16/06/2023,,16/06/2023,,"SI20UMC5C55 FS,SI--CYA8-25 FS,SI20CYA8A10 FS,SI20B--8-50 FS,SI20TPI6A8-30 FS,SI20TPI21A8-30 FS","SI20UMC5C55,SI--CYA8-25,SI20CYA8A10,SI20B--8-50,SI20TPI6A8-30,SI20TPI21A8-30","SI20M--9-60 FS,SI20MB-9-15 FS","SI20M--9-60,SI20MB-9-15",149,,149,,34,,34,,98,112,"HK1003 -Blackpoint D2 - Rev.0E DD30092021"
1-1166,SI--CYA7A15,"ERECTION TELECOMMUNICATION OTHER BUILDINGS (EXCEPT UMC)",5121,"HK1003-Rev.0E-3",TT_Task,"55902",-,-,-,0,TK_NotStart,24/02/2023,,20/04/2023,,"SI--CYA2-05 FS,SI20UBA7-15 FS,SI20SGA6-15 FS,SI20UBA7-25 FS,SI20BZL7C15 FS,SI20UBA7-104 FS,SI20BZL7E17 SS,SI20UBA7-17 FS,SI20BZL7E16 FS,SI20UMC5D40 FS,SI--CYA4-40 FS,SI20CY-7-15 FS","SI--CYA2-05,SI20UBA7-15,SI20SGA6-15,SI20UBA7-25,SI20BZL7C15,SI20UBA7-104,SI20BZL7E17,SI20UBA7-17,SI20BZL7E16,SI20UMC5D40,SI--CYA4-40,SI20CY-7-15","SI20CY-7-10# FF,SI20CY-7-10# SS,SI--CYA8-10 FS,SI20TPI6A7-25 SS,SI20TPI21A7-25 SS","SI20CY-7-10#,SI20CY-7-10#,SI--CYA8-10,SI20TPI6A7-25,SI20TPI21A7-25",133,,141,,31,,33,,91,400,"HK1003 -Blackpoint D2 - Rev.0E DD30092021"
1-1167,SI20SGC8E10,"(TOP-20SGC-02) FF SPRAY DELUGE SYSTEMS FOR TS AUXILIARY OIL SYSTEMS / H2 SYSTEMS SGC",5121,"HK1003-Rev.0E-3",TT_FinMile,"55902",-,-,-,0,TK_NotStart,17/04/2023,,17/04/2023,,"SI20BZK7E25 FS,SI20SGA8B27 FS,SI20SGA8B26 SS,SI20SGE6E15 FS,SI20MAD8-26& FS","SI20BZK7E25,SI20SGA8B27,SI20SGA8B26,SI20SGE6E15,SI20MAD8-26&","SI20SGC8-37 FS","SI20SGC8-37",141,,141,,32,,32,,95,88,"HK1003 -Blackpoint D2 - Rev.0E DD30092021"
1-1168,SI20S--8-25,"COLD COMMISSIONING HVAC SYSTEM FOR 20UMC SAM",5121,"HK1003-Rev.0E-3",TT_Task,"55902",-,-,-,0,TK_NotStart,11/04/2023,,01/05/2023,,"SI20SAM8-11 FS,SI20CPC8-27 FS,SI20BFA8-35 SS,SI-PM-40 FS","SI20SAM8-11,SI20CPC8-27,SI20BFA8-35,SI-PM-40","SI20MB-9-15 FS","SI20MB-9-15",140,,143,,32,,33,,94,256,"HK1003 -Blackpoint D2 - Rev.0E DD30092021"
1-1169,SI20SAM8-11,"(TOP-20SAM10) HVAC SYSTEM FOR UMC BUILDING",5121,"HK1003-Rev.0E-3",TT_FinMile,"55902",-,-,-,0,TK_NotStart,10/04/2023,,10/04/2023,,"SI20SAM7-25 FS,SI20SAM6E15 FS,SI20SAM6F15 FS,SI20BZK7E25 FS,SI--9998-22& FS","SI20SAM7-25,SI20SAM6E15,SI20SAM6F15,SI20BZK7E25,SI--9998-22&","SI20S--8-25 FS","SI20S--8-25",140,,140,,32,,32,,94,256,"HK1003 -Blackpoint D2 - Rev.0E DD30092021"
1-1170,SI20UMC3B25,"FABRICATION DESIGN/FABRICATION/TRANSPORT STEEL STRUCTURE 20UMC",5121,"HK1003-Rev.0E-3",TT_Task,"55902",-,-,-,34,TK_Active,12/08/2021,12/08/2021,03/01/2022,,"SI--5552-25 FS,SI--UMC2B75 FS,SI--5552-91 FS,SI--5552-90 FS,SI--UMC2B94 FF,SI--UMC2B93 FS,SI--SG-2-46 FF","SI--5552-25,SI--UMC2B75,SI--5552-91,SI--5552-90,SI--UMC2B94,SI--UMC2B93,SI--SG-2-46","SI20UMC5B10 FS","SI20UMC5B10",53,53,74,,12,12,17,,25,32,"HK1003 -Blackpoint D2 - Rev.0E DD30092021"
1-1171,SI20UBF5E45,"(RFE) WALLS READY 20UBE/UBF",5121,"HK1003-Rev.0E-3",TT_FinMile,"55902",-,-,-,0,TK_NotStart,22/04/2022,,22/04/2022,,"SI20UBF5-17 FS,SI20UBF5E15.04 FS","SI20UBF5-17,SI20UBF5E15.04","SI20BZP7-50 FS,SI20UBF5B10 FS,SI20BAT4-10 FS,SI20BZL7-38 FS,SI20UBA5-05 FF,SI20UBX5-05 FF,SI20UBD5-60 FF,SI20UBZ5-73 FS,SI20BAW5A16 FS","SI20BZP7-50,SI20UBF5B10,SI20BAT4-10,SI20BZL7-38,SI20UBA5-05,SI20UBX5-05,SI20UBD5-60,SI20UBZ5-73,SI20BAW5A16",89,,89,,20,,20,,59,144,"HK1003 -Blackpoint D2 - Rev.0E DD30092021"
1-1172,SI20UBF5E15,"CONSTRUCTION WALLS 20UBF",5121,"HK1003-Rev.0E-3",TT_Task,"55902",-,-,-,0,TK_NotStart,09/03/2022,,03/05/2022,,"SI20UBF5-15 FS","SI20UBF5-15","SI20UGU5-76 SS","SI20UGU5-76",83,,91,,19,,21,,52,960,"HK1003 -Blackpoint D2 - Rev.0E DD30092021"
1-1173,SI20MKA8-70,"PREPARATION FOR VENTILATION TEST (COMM. DEPT.) MKA",5121,"HK1003-Rev.0E-3",TT_Task,"55902",-,-,-,0,TK_NotStart,30/06/2023,,02/07/2023,,"SI20MKA6-80 FS,SI20MKA8-10 FS,SI20MKA8-25 FS","SI20MKA6-80,SI20MKA8-10,SI20MKA8-25","SI20MKA8-72 FS","SI20MKA8-72",151,,152,,35,,35,,99,184,"HK1003 -Blackpoint D2 - Rev.0E DD30092021"
1-1174,SI20MKA8-74,"INSPECTION AFTER VENTILATION TEST (COMM. DEPT.) MKA",5121,"HK1003-Rev.0E-3",TT_Task,"55902",-,-,-,0,TK_NotStart,10/07/2023,,13/07/2023,,"SI20MKA8-72 FS,SI20HA-9A45 FS","SI20MKA8-72,SI20HA-9A45","SI20M--9-60 FS","SI20M--9-60",153,,153,,35,,35,,99,144,"HK1003 -Blackpoint D2 - Rev.0E DD30092021"
1-1175,SI20MKA8-72,"VENTILATION TEST AT 3000 rpm (COMM. DEPT.) -after first ignition- MKA",5121,"HK1003-Rev.0E-3",TT_Task,"55902",-,-,-,0,TK_NotStart,03/07/2023,,04/07/2023,,"SI20MKA6F08 FS,SI20MKA8-70 FS,SI20MB-9-15 FS,SI20MKA9-42 FS,SI20MKA9-42 SS","SI20MKA6F08,SI20MKA8-70,SI20MB-9-15,SI20MKA9-42,SI20MKA9-42","SI20MKA8-74 FS","SI20MKA8-74",152,,152,,35,,35,,99,184,"HK1003 -Blackpoint D2 - Rev.0E DD30092021"
1-1176,SI20--P6-73,"PREPARATION CHEMICAL CLEANING HRSG20",5121,"HK1003-Rev.0E-3",TT_Task,"55902",-,-,-,0,TK_NotStart,15/04/2023,,12/05/2023,,"SI20LBG6A17 FS,SI20LBB6J17 FF,SI20LBA6H15 FS,SI20LBB6J15 FS,SI20UMY6M70 FS,SI20LBA6J15 FS,SI20LBG6A15 FS,SI20HA-6-56 FS,SI20HA-6A45 FF,SI20LBA6J71 FF","SI20LBG6A17,SI20LBB6J17,SI20LBA6H15,SI20LBB6J15,SI20UMY6M70,SI20LBA6J15,SI20LBG6A15,SI20HA-6-56,SI20HA-6A45,SI20LBA6J71","SI20HB-8-25 SS,SI20HA-6-70 FF,SI20--P6-76 FF","SI20HB-8-25,SI20HA-6-70,SI20--P6-76",141,,144,,32,,33,,95,0,"HK1003 -Blackpoint D2 - Rev.0E DD30092021"
1-1177,SI20CFE4-40,"(OTD-OS) ON SITE EMISSION MONITORING SYSTEM 20CFE",5121,"HK1003-Rev.0E-3",TT_FinMile,"55902",-,-,-,0,TK_NotStart,29/06/2022,,29/06/2022,,"SI20CFE4-25 FF,SI20CFE2-90 FS","SI20CFE4-25,SI20CFE2-90","SI20CFE7-16 FS,SI-P222-177 FF","SI20CFE7-16,SI-P222-177",99,,99,,23,,23,,71,1424,"HK1003 -Blackpoint D2 - Rev.0E DD30092021"
1-1178,SI20CFE8-35,"COMMISSIONING CONTINIOUS EMISSION MONITORING SYSTEM (2) (CALIBRATION) HRSG20",5121,"HK1003-Rev.0E-3",TT_Task,"55902",-,-,-,0,TK_NotStart,10/07/2023,,16/07/2023,,"SI20CFE8-13 FS,SI20CFE8-13 FF,SI20CFE8-36 FS,SI-PM-40 FS,SI20TPI17A8-30 FS,SI20TPI19I8-30 FS,SI20TPI19II8-30 FS,SI20HSJ8-26 FS,SI20L--9I81 SS","SI20CFE8-13,SI20CFE8-13,SI20CFE8-36,SI-PM-40,SI20TPI17A8-30,SI20TPI19I8-30,SI20TPI19II8-30,SI20HSJ8-26,SI20L--9I81","SI20M--9-55 FS","SI20M--9-55",153,,154,,35,,35,,99,8,"HK1003 -Blackpoint D2 - Rev.0E DD30092021"
1-1179,SP--SGJ2-55,"FINAL ELECTRICAL LOAD DATA (VEL) FIRE FIGHTING / GAS DETECTION SGJ / CYQ / CYE",5121,"HK1003-Rev.0E-3",TT_Mile,"55902",-,-,-,100,TK_Complete,18/06/2021,18/06/2021,18/06/2021,18/06/2021,"SP--SGJ2-85 SS","SP--SGJ2-85","SP--B--2-52 SS","SP--B--2-52",45,45,45,45,10,10,10,10,18,,"HK1003 -Blackpoint D2 - Rev.0E DD30092021"
1-1180,SP--SGJ2-03,"P&I DIAGRAM FIRE FIGHTING / GAS DETECTION SGJ / CYQ / CYE",5121,"HK1003-Rev.0E-3",TT_Mile,"55902",-,-,-,100,TK_Complete,18/06/2021,18/06/2021,18/06/2021,18/06/2021,"SI-----1-04 SS,SP--SGJ2-10 FS,SP--SGJ2-85 FS","SI-----1-04,SP--SGJ2-10,SP--SGJ2-85","SI--SG-2-42 FS","SI--SG-2-42",45,45,45,45,10,10,10,10,18,,"HK1003 -Blackpoint D2 - Rev.0E DD30092021"
1-1181,SI20MB-4G40,"(OTD-OS) ON SITE GT INSULATION MB-",5121,"HK1003-Rev.0E-3",TT_FinMile,"55902",-,-,-,0,TK_NotStart,23/07/2022,,23/07/2022,,"SI20MBA4G25 FS","SI20MBA4G25","SI20MB-6-38 FS,SI20MB-4-40 FS","SI20MB-6-38,SI20MB-4-40",103,,103,,24,,24,,74,272,"HK1003 -Blackpoint D2 - Rev.0E DD30092021"
1-1182,SI20MBA4G25,"TRANSPORT GT INSULATION MB-",5121,"HK1003-Rev.0E-3",TT_Task,"55902",-,-,-,0,TK_NotStart,23/04/2022,,17/06/2022,,"SP--MB-3B80 FS","SP--MB-3B80","SI20MB-4G40 FS","SI20MB-4G40",90,,97,,21,,22,,59,560,"HK1003 -Blackpoint D2 - Rev.0E DD30092021"
1-1183,SI--EK-2-89,"(DF) INPUT FOR MS3 FUEL GAS RECEIVING AND MIXING SYSTEM EK",5121,"HK1003-Rev.0E-3",TT_FinMile,"55902",-,-,-,100,TK_Complete,01/08/2021,01/08/2021,01/08/2021,01/08/2021,"SI--EK-2-86 FS","SI--EK-2-86","SI20UEN2-60 FS,SI-P222-62 FS","SI20UEN2-60,SI-P222-62",52,52,52,52,12,12,12,12,24,,"HK1003 -Blackpoint D2 - Rev.0E DD30092021"
1-1184,SI20PAA2-85,"CONTRACT INTO FORCE COOLING TOWER COARSE SCREEN 20PAA (MPA)",5121,"HK1003-Rev.0E-3",TT_Mile,"55902",-,-,-,100,TK_Complete,29/09/2021,29/09/2021,29/09/2021,29/09/2021,"SI20PAA2-80 FS,SI--PDB2B85 FS","SI20PAA2-80,SI--PDB2B85","SI20PAA3-25 FS,SI--PAD2-91 FS","SI20PAA3-25,SI--PAD2-91",60,60,60,60,14,14,14,14,30,,"HK1003 -Blackpoint D2 - Rev.0E DD30092021"
1-1185,SI--LBF2B85,"CONTRACT INTO FORCE BYPASS STATION 20LBF",5121,"HK1003-Rev.0E-3",TT_Mile,"55902",-,-,-,100,TK_Complete,27/01/2021,27/01/2021,27/01/2021,27/01/2021,"SI--LBF2B80 FS,SI--HA-2-85 SS,SI--3331-32 FS","SI--LBF2B80,SI--HA-2-85,SI--3331-32","SI20LBF3B25 FS,SI--LBF2B86 FS,SI--LBF2B65 FS","SI20LBF3B25,SI--LBF2B86,SI--LBF2B65",25,25,25,25,5,5,5,5,3,,"HK1003 -Blackpoint D2 - Rev.0E DD30092021"
1-1186,SI--LBF2B80,"QUOTATION STAGE BYPASS STATION 20LBF",5121,"HK1003-Rev.0E-3",TT_Task,"55902",-,-,-,100,TK_Complete,30/12/2020,30/12/2020,26/01/2021,26/01/2021,"SI--LBF2B75 FS","SI--LBF2B75","SI--LBF2B85 FS","SI--LBF2B85",21,21,25,25,5,5,5,5,1,,"HK1003 -Blackpoint D2 - Rev.0E DD30092021"
1-1187,SI--LBF2B75,"CONTRACT REVIEW, PREPARATION RFQ BYPASS STATION 20LBF",5121,"HK1003-Rev.0E-3",TT_Task,"55902",-,-,-,100,TK_Complete,02/12/2020,02/12/2020,29/12/2020,29/12/2020,"SI-----1-01 FS","SI-----1-01","SI--LBF2B65 FS,SI--LBF2B80 FS","SI--LBF2B65,SI--LBF2B80",17,17,21,21,4,4,5,5,1,,"HK1003 -Blackpoint D2 - Rev.0E DD30092021"
1-1188,SI20UBA5-60,"(RFE) FOUNDATION 20UBA1110/20",5121,"HK1003-Rev.0E-3",TT_FinMile,"55902",-,-,-,0,TK_NotStart,22/01/2023,,22/01/2023,,"SI20UBA5-55 FS,SI20UBA5-89 FS,SI20UBA7C-31 FS,SI20UBA5-55.03 FS","SI20UBA5-55,SI20UBA5-89,SI20UBA7C-31,SI20UBA5-55.03","SI20B--8-52 FS","SI20B--8-52",129,,129,,30,,30,,89,584,"HK1003 -Blackpoint D2 - Rev.0E DD30092021"
1-1189,SI20UBA5-55,"CONSTRUCTION FOUNDATION  20UBA1110/20",5121,"HK1003-Rev.0E-3",TT_Task,"55902",-,-,-,0,TK_NotStart,23/12/2021,,26/01/2022,,"SI20UBA5-50 FS,SI20UBA2-52 FF,SI20UBA5-55.00 SS","SI20UBA5-50,SI20UBA2-52,SI20UBA5-55.00","SI20UBA5-60 FS,SI20UBA5-82 FS,SI20UBA5-82 FF,SI20BZP7-60 FS,SI20HB-6A17 SS,SI20UBA5-103 FS","SI20UBA5-60,SI20UBA5-82,SI20UBA5-82,SI20BZP7-60,SI20HB-6A17,SI20UBA5-103",72,,77,,16,,18,,43,256,"HK1003 -Blackpoint D2 - Rev.0E DD30092021"
1-1190,SI20SMM4-25,"TRANSPORT CRANE SMM01/02/03 FOR 20UMC",5121,"HK1003-Rev.0E-3",TT_Task,"55902",-,-,-,0,TK_NotStart,13/01/2022,,09/03/2022,,"SI20SMM3-80 FS","SI20SMM3-80","SI20SMM4-40 FS","SI20SMM4-40",75,,83,,17,,19,,45,128,"HK1003 -Blackpoint D2 - Rev.0E DD30092021"
1-1191,SI20SMM3-80,"(RFS) READY FOR SHIPMENT CRANE SMM01/02/03 FOR 20UMC",5121,"HK1003-Rev.0E-3",TT_FinMile,"55902",-,-,-,0,TK_NotStart,12/01/2022,,12/01/2022,,"SI20SMM4-10 FS","SI20SMM4-10","SI20SMM4-25 FS","SI20SMM4-25",75,,75,,17,,17,,45,128,"HK1003 -Blackpoint D2 - Rev.0E DD30092021"
1-1192,SI20SMM6-70,"(CCC) CRANE 20SMM01/02 IN  SERVICE 20UMC",5121,"HK1003-Rev.0E-3",TT_Mile,"55902",-,-,-,0,TK_NotStart,25/04/2022,,25/04/2022,,"SI20SMM6-15 FS","SI20SMM6-15","SI20MB-6-15& FS,SI20MB-6-15& SS,SI20UMC6M15 FS,SI20UMY6M10 FS,SI20MA-6-07 FS,SI20SAM6F15 FS,SI20SMM6-71 FS,SI20MAG6-06 FS,SI20MAG6-61 FS,SI-P222-82 FS,SI20MAW6M10 FS,SI20MAW6M11 FS,SI20MAL6M10 FS,SI20SGY7-15 FS","SI20MB-6-15&,SI20MB-6-15&,SI20UMC6M15,SI20UMY6M10,SI20MA-6-07,SI20SAM6F15,SI20SMM6-71,SI20MAG6-06,SI20MAG6-61,SI-P222-82,SI20MAW6M10,SI20MAW6M11,SI20MAL6M10,SI20SGY7-15",90,,90,,21,,21,,59,96,"HK1003 -Blackpoint D2 - Rev.0E DD30092021"
1-1193,SI20UMC5B90,"CONCRETE CONSTRUCTION BUILDING FOUNDATION 20UMC",5121,"HK1003-Rev.0E-3",TT_Task,"55902",-,-,-,0,TK_NotStart,03/11/2021,,01/02/2022,,"SI20UMC5B85 FS,SI20UMC5Y48 FF,SI20UMC2B55 FS,SI20UMC2B50 FS,SI20UMC5B75 SS,SI20UMC5Y46 SS,SI20UMC5B90.00 SS","SI20UMC5B85,SI20UMC5Y48,SI20UMC2B55,SI20UMC2B50,SI20UMC5B75,SI20UMC5Y46,SI20UMC5B90.00","SI20UPY5P10 SS,SI20UMC5B80# FF,SI20UBA5-17 FF,SI20BAW5B15 SS,SI20UMC5B95 FS,SI20UMC5B45 SS,SI20UPY5P15 FF","SI20UPY5P10,SI20UMC5B80#,SI20UBA5-17,SI20BAW5B15,SI20UMC5B95,SI20UMC5B45,SI20UPY5P15",65,,78,,15,,18,,37,424,"HK1003 -Blackpoint D2 - Rev.0E DD30092021"
1-1194,SI20UMC5B85,"(H) START PLACING FORMWORK BUILD.FOUNDATION 20UMC",5121,"HK1003-Rev.0E-3",TT_Mile,"55902",-,-,-,0,TK_NotStart,01/10/2021,,01/10/2021,,"SI-----5-21& FS,SI20UMC2B55 FS,SI20UMC5A15 FS,SI20UMC2B68 FS","SI-----5-21&,SI20UMC2B55,SI20UMC5A15,SI20UMC2B68","SI20UMC5B90 FS","SI20UMC5B90",60,,60,,14,,14,,30,688,"HK1003 -Blackpoint D2 - Rev.0E DD30092021"
1-1195,SI20PAB5-105,"BACKFILLING OF SHEET PILE  PIPING SYSTEM (OUTSIDE) PAB UMC - URD",5121,"HK1003-Rev.0E-3",TT_Task,"55902",-,-,-,0,TK_NotStart,28/11/2021,,29/12/2021,,"SI20PAB5-110 FS,SI20PAB5-100 FS,SI20PAB5-90 FS","SI20PAB5-110,SI20PAB5-100,SI20PAB5-90","SI20PAB5-65# FF,SI20PAB6A15 FS,SI20PAB6A16 FS,SI20PAB6A17 FS,SI20UBZ5-69 SS,SI-UZA2-99 SS,SI-UZA2-99.00 SS","SI20PAB5-65#,SI20PAB6A15,SI20PAB6A16,SI20PAB6A17,SI20UBZ5-69,SI-UZA2-99,SI-UZA2-99.00",69,,73,,16,,17,,40,920,"HK1003 -Blackpoint D2 - Rev.0E DD30092021"
1-1196,SI20BAW5C17,"ERECTION OUTDOOR EARTHING/LIGHTNING 20URA/URD AREA",5121,"HK1003-Rev.0E-3",TT_Task,"55902",-,-,-,0,TK_NotStart,15/06/2022,,22/09/2022,,"SI--BAW4-40 FS,SI--BAW2-05 FS,SI20URA5E45 FF,SI20URA5-45 FF,SI20URD5-45 FS","SI--BAW4-40,SI--BAW2-05,SI20URA5E45,SI20URA5-45,SI20URD5-45","SI--BAW8-10 FS,SI20BAW5-15# SS,SI20BAW5-15# FF,SI20TP-263& FS,SI20TPE8A7-16 FS","SI--BAW8-10,SI20BAW5-15#,SI20BAW5-15#,SI20TP-263&,SI20TPE8A7-16",97,,111,,22,,26,,69,2264,"HK1003 -Blackpoint D2 - Rev.0E DD30092021"
1-1197,SI--BAW8A10,"(TOP-20BAW-01) PLANT EARTHING GRID FOR BACK-ENERGISING",5121,"HK1003-Rev.0E-3",TT_FinMile,"55902",-,-,-,0,TK_NotStart,03/04/2023,,03/04/2023,,"SI20BAW5C23 FS,SI20BAW5B15 FS,SI20BAW5A18 FS,SI20BAW5C15 FS,SI--BAW7-55 FS,SI20BAW5C16 FS,SI20BAW5A16 FS","SI20BAW5C23,SI20BAW5B15,SI20BAW5A18,SI20BAW5C15,SI--BAW7-55,SI20BAW5C16,SI20BAW5A16","SI20B--8-50 SS","SI20B--8-50",139,,139,,32,,32,,94,16,"HK1003 -Blackpoint D2 - Rev.0E DD30092021"
1-1198,SI--L--2-45,"DESIGN DATA SHEETS FOR ALL L-COMPONENTS AVAILABLE",5121,"HK1003-Rev.0E-3",TT_Mile,"55902",-,-,-,100,TK_Complete,07/02/2021,07/02/2021,07/02/2021,07/02/2021,"SI--L--2-35 FS","SI--L--2-35","SI--L--2-75 FS","SI--L--2-75",27,27,27,27,6,6,6,6,4,,"HK1003 -Blackpoint D2 - Rev.0E DD30092021"
1-1199,SI--L--2-35,"DESIGN DATA SHEETS L-COMPONENTS",5121,"HK1003-Rev.0E-3",TT_Task,"55902",-,-,-,100,TK_Complete,29/11/2020,29/11/2020,06/02/2021,06/02/2021,"SI--L--2-10 FF,SI--L--2-05 SS,SI20---2M10 FS,SI-----1-01 FS,SI--3332-02 SS","SI--L--2-10,SI--L--2-05,SI20---2M10,SI-----1-01,SI--3332-02","SI---1P2A529 FS,SI---1P2A528 FS,SI--PM-2-60 FS,SI--PM-2-30 FS,SI--L--2I46 FS,SI--L--2-70# SS,SI--L--2-45 FS,SI--L--2I45 FS,SI---1P2A513 FS","SI---1P2A529,SI---1P2A528,SI--PM-2-60,SI--PM-2-30,SI--L--2I46,SI--L--2-70#,SI--L--2-45,SI--L--2I45,SI---1P2A513",17,17,27,27,4,4,6,6,1,,"HK1003 -Blackpoint D2 - Rev.0E DD30092021"
1-1200,SI20UVM5-45,"(RFE) FOUNDATION 20UVM01",5121,"HK1003-Rev.0E-3",TT_FinMile,"55902",-,-,-,0,TK_NotStart,16/06/2022,,16/06/2022,,"SI20UVM5-16 FS,SI20UVM5-16.07 FS","SI20UVM5-16,SI20UVM5-16.07","SI20HSJ6-17 FS,SI20UVM6B20 FS","SI20HSJ6-17,SI20UVM6B20",97,,97,,22,,22,,69,848,"HK1003 -Blackpoint D2 - Rev.0E DD30092021"
1-1201,SI20UVM5-16,"CONSTRUCTION FOUNDATION 20UVM01",5121,"HK1003-Rev.0E-3",TT_Task,"55902",-,-,-,0,TK_NotStart,12/05/2022,,08/06/2022,,"SI20UVM5-11 FS","SI20UVM5-11","SI20UVM5-45 FS","SI20UVM5-45",92,,96,,21,,22,,64,912,"HK1003 -Blackpoint D2 - Rev.0E DD30092021"
1-1202,SI20QU-2-40,"(DF) P&ID'S SAMPLING CONTAINER 20QU",5121,"HK1003-Rev.0E-3",TT_FinMile,"55902",-,-,-,100,TK_Complete,22/04/2021,22/04/2021,22/04/2021,22/04/2021,"SI20QU-2-05 FS","SI20QU-2-05","SI20QU-2-75 FS","SI20QU-2-75",37,37,37,37,8,8,8,8,9,,"HK1003 -Blackpoint D2 - Rev.0E DD30092021"
1-1203,SI20BBA4-10,"TRANSPORT TO WORKSHOP MV SWITCHGEAR 20/01BBA/BBB (TO ST. INGBERT-INSTALL INTO ELECTRICAL MODULES)",5121,"HK1003-Rev.0E-3",TT_Task,"55902",-,-,-,0,TK_NotStart,22/01/2022,,23/01/2022,,"SI20BBA3-25 FS","SI20BBA3-25","SI20UBA4J50 FS,SI20UBA3C15 FS","SI20UBA4J50,SI20UBA3C15",77,,77,,17,,18,,46,768,"HK1003 -Blackpoint D2 - Rev.0E DD30092021"
1-1204,SI20MB-6-15,"ERECTION GT AUXILIARIES 20MB-",5121,"HK1003-Rev.0E-3",TT_Task,"55902",-,-,-,0,TK_NotStart,27/08/2022,,21/10/2022,,"SI20MB-6-15& FS,SI20UMC5B95 FS,SI20MB-6-10 FS","SI20MB-6-15&,SI20UMC5B95,SI20MB-6-10","SI20SGJ6-5 SS,SI20MBV8-10 FS,SI20MBV6-55 FS,SI20MB-6-40 SS,SI20MB-7A15 FS,SI20MBV6-70 FS","SI20SGJ6-5,SI20MBV8-10,SI20MBV6-55,SI20MB-6-40,SI20MB-7A15,SI20MBV6-70",108,,115,,25,,27,,79,568,"HK1003 -Blackpoint D2 - Rev.0E DD30092021"
1-1205,SI20MBV8-10,"(TOP-20MBV) GT LUBE OIL / LIFTING OIL SYSTEM",5121,"HK1003-Rev.0E-3",TT_FinMile,"55902",-,-,-,0,TK_NotStart,27/04/2023,,27/04/2023,,"SP20MB-4A40 FS,SI20MBA6A15 FS,SI20MBA6-40 FS,SI20MBQ7H15 FS,SI20MB-7J15 FS,SI20MB-4A25 FS,SI20MB-7H15 FS,SI--2222-36 FS,SI20MBA6F15 FS,SI20MB-6-15 FS,SI20BZK7L25 FS,SI20MB-7A15 FS,SI20BZK7F26 FS,SI20MBV6-70 FS,SI20MB-6A15 FS,SI20MBV6-55 FS,SI20BZK7F26 FF,SI20MBA8-23& FS","SP20MB-4A40,SI20MBA6A15,SI20MBA6-40,SI20MBQ7H15,SI20MB-7J15,SI20MB-4A25,SI20MB-7H15,SI--2222-36,SI20MBA6F15,SI20MB-6-15,SI20BZK7L25,SI20MB-7A15,SI20BZK7F26,SI20MBV6-70,SI20MB-6A15,SI20MBV6-55,SI20BZK7F26,SI20MBA8-23&","SI20MBA8-10 FS,SI20MB-8E25 FS,SI20MBV8H25 FS","SI20MBA8-10,SI20MB-8E25,SI20MBV8H25",142,,142,,33,,33,,96,8,"HK1003 -Blackpoint D2 - Rev.0E DD30092021"
1-1206,SI20LBB6J17,"ERECTION, NDT PIPE / VALVES 20LBB-LBC80",5121,"HK1003-Rev.0E-3",TT_Task,"55902",-,-,-,0,TK_NotStart,24/12/2022,,03/02/2023,,"SI20MAN6E40 FF,SI---1P6A05 FS,SI20MA-6E41 FF,SI20MA-6A11 FS,SI20MA-6A25 FS","SI20MAN6E40,SI---1P6A05,SI20MA-6E41,SI20MA-6A11,SI20MA-6A25","SI20--P6-73 FF,SI20LBB6J49 FS,SI20LAC8B25 FS,SI20MAN6H15 FF,SI20LBB6J73 FS,SI20--P6-77 FF,SI20-6-16# FF,SI20-6-16# SS","SI20--P6-73,SI20LBB6J49,SI20LAC8B25,SI20MAN6H15,SI20LBB6J73,SI20--P6-77,SI20-6-16#,SI20-6-16#",125,,130,,29,,30,,87,112,"HK1003 -Blackpoint D2 - Rev.0E DD30092021"
1-1207,SI20LBB8J11,"(TOP-20LBB) REHEATING STEAM SYSTEM",5121,"HK1003-Rev.0E-3",TT_FinMile,"55902",-,-,-,0,TK_NotStart,17/04/2023,,17/04/2023,,"SI20LBA6J45 FS,SI20LBG7A15 FS,SI20LBG6A45 FS,SI20LBG6A47 FS,SI20LBA6H70 FS,SI20LBA6H45 FS,SI20LBG7A17 FS,SI20LBG7C15 FS,SI20LBG6A17 FS,SI20LBA6J70 FS,SI20LBA7J15 FS,SI20LBG6A15 FS,SI20BZK7E25 FS,SI20LBA7H15 FS,SI--9998-21& SS,SI20LBB7J17 FS,SI20LBB6J73 FS,SI20LBB7J15 FS,SI20LBB6J49 FS,SI20LBB6J47 FS,SI20LBA6H45 FF,SI20LBA7H15 FF,SI20LBA7H16 FS,SI20LBA6J72 FS,SI20LBA6J73 FS,SI20LBA7J16 FS","SI20LBA6J45,SI20LBG7A15,SI20LBG6A45,SI20LBG6A47,SI20LBA6H70,SI20LBA6H45,SI20LBG7A17,SI20LBG7C15,SI20LBG6A17,SI20LBA6J70,SI20LBA7J15,SI20LBG6A15,SI20BZK7E25,SI20LBA7H15,SI--9998-21&,SI20LBB7J17,SI20LBB6J73,SI20LBB7J15,SI20LBB6J49,SI20LBB6J47,SI20LBA6H45,SI20LBA7H15,SI20LBA7H16,SI20LBA6J72,SI20LBA6J73,SI20LBA7J16","SI20LBB8H25 FS","SI20LBB8H25",141,,141,,32,,32,,95,56,"HK1003 -Blackpoint D2 - Rev.0E DD30092021"
1-1208,SI20MBA2D65,"(DF) INPUT FOR M2 WASH WATER TANK 20MBA",5121,"HK1003-Rev.0E-3",TT_FinMile,"55902",-,-,-,100,TK_Complete,18/06/2021,18/06/2021,18/06/2021,18/06/2021,"SI-----1-01 SS,SI20MBA2D75 FS","SI-----1-01,SI20MBA2D75","SI---4P2A10 SS,SI---3P2A10 FS","SI---4P2A10,SI---3P2A10",45,45,45,45,10,10,10,10,18,,"HK1003 -Blackpoint D2 - Rev.0E DD30092021"
1-1209,SI20LCL2B80,"QUOTATION STAGE BOILER BLOWDOWN PUMP LCL",5121,"HK1003-Rev.0E-3",TT_Task,"55902",-,-,-,100,TK_Complete,23/02/2021,23/02/2021,02/05/2021,02/05/2021,"SI20LCL2B75 FS,SI--3332-76 FS","SI20LCL2B75,SI--3332-76","SI20LCL2B85 FS","SI20LCL2B85",29,29,39,39,6,6,9,9,5,,"HK1003 -Blackpoint D2 - Rev.0E DD30092021"
1-1210,SI20PGB6M40,"(RFP) READY FOR PIPE CONNECTION CLOSED COOLING WATER PUMP PGB",5121,"HK1003-Rev.0E-3",TT_FinMile,"55902",-,-,-,0,TK_NotStart,12/06/2022,,12/06/2022,,"SI20PGB6M16 FS,SI20PGB6M15 FS","SI20PGB6M16,SI20PGB6M15","SI20PGB6H15 FS,SI20PGB6H17 FS","SI20PGB6H15,SI20PGB6H17",97,,97,,22,,22,,69,1928,"HK1003 -Blackpoint D2 - Rev.0E DD30092021"
1-1211,SI20MKW6-57,"FINAL ERECTION MKW PIPING AFTER OIL FLUSHING MKW",5121,"HK1003-Rev.0E-3",TT_Task,"55902",-,-,-,0,TK_NotStart,17/03/2023,,23/03/2023,,"SI20MBV6-55 FS","SI20MBV6-55","SI20MB-9-05 FS,SI20MKW8-10 FS","SI20MB-9-05,SI20MKW8-10",136,,137,,31,,32,,92,400,"HK1003 -Blackpoint D2 - Rev.0E DD30092021"
1-1212,SI20MKW6H15,"PIPING ERECTION SEAL OIL SYSTEM FOR GENERATOR 20MKW",5121,"HK1003-Rev.0E-3",TT_Task,"55902",-,-,-,0,TK_NotStart,28/08/2022,,22/10/2022,,"SI20MKW6-15 FS,SI---5P6A09 FS","SI20MKW6-15,SI---5P6A09","SI20MKW8-10 FS","SI20MKW8-10",108,,116,,25,,27,,79,1896,"HK1003 -Blackpoint D2 - Rev.0E DD30092021"
1-1213,SI20MKW8-10,"(TOP-20MKW) GT GENERATOR SEAL OIL SUPPLY SYSTEM",5121,"HK1003-Rev.0E-3",TT_FinMile,"55902",-,-,-,0,TK_NotStart,15/06/2023,,15/06/2023,,"SI20BZK7C25 FS,SI20MKW6-15 FS,SI20MKW6H15 FS,SI20BZK7A25 FS,SI20MKW6-57 FS,SI20BZK7F26 FS,SI20MBA8-23& FS","SI20BZK7C25,SI20MKW6-15,SI20MKW6H15,SI20BZK7A25,SI20MKW6-57,SI20BZK7F26,SI20MBA8-23&","SI20MB-9-05 SS,SI20MKW8H25 FS","SI20MB-9-05,SI20MKW8H25",149,,149,,34,,34,,98,8,"HK1003 -Blackpoint D2 - Rev.0E DD30092021"
1-1214,SI20MKW6-15,"ERECTION SEAL OIL SYSTEM 20MKW",5121,"HK1003-Rev.0E-3",TT_Task,"55902",-,-,-,0,TK_NotStart,07/08/2022,,27/08/2022,,"SI20MKW4-40 FS,SI20MKA6-12 FS","SI20MKW4-40,SI20MKA6-12","SI20MKW8-10 FS,SI20MKW6H15 FS,SI20MKQ6-15 FS","SI20MKW8-10,SI20MKW6H15,SI20MKQ6-15",105,,108,,24,,25,,77,904,"HK1003 -Blackpoint D2 - Rev.0E DD30092021"
1-1215,SI20LBB7J17,"ELECTRICAL ERECTION / VALVES 20LBB-LBC80",5121,"HK1003-Rev.0E-3",TT_Task,"55902",-,-,-,0,TK_NotStart,01/04/2023,,07/04/2023,,"SI20LBB6J49 FF,SI20BZK7E25 FF,SI20BZP7D18 FS,SI20BZP7D19 FS,SI20BZP7-5 FS,SI20BZP7-196 FS,SI20BZP7-174 FS,SI20UMY6M10 FS,SI20UMY6M11 FS,SI20UMY6M12 FS,SI--2227-68 FS,SI--BZP2-05 FS,SI--PEE7-20 FS,SI--BZP4B40 FS","SI20LBB6J49,SI20BZK7E25,SI20BZP7D18,SI20BZP7D19,SI20BZP7-5,SI20BZP7-196,SI20BZP7-174,SI20UMY6M10,SI20UMY6M11,SI20UMY6M12,SI--2227-68,SI--BZP2-05,SI--PEE7-20,SI--BZP4B40","SI20LBA8J10 FS,SI20LBA8H10 FS,SI20LBG8A10 FS,SI20LBB8J11 FS,SI20BZK7D11# FF,SI20BZK7D11# SS","SI20LBA8J10,SI20LBA8H10,SI20LBG8A10,SI20LBB8J11,SI20BZK7D11#,SI20BZK7D11#",139,,139,,32,,32,,94,136,"HK1003 -Blackpoint D2 - Rev.0E DD30092021"
1-1216,SI--CHY2-80,"QUOTATION STAGE PPROT./SYNCHR./METERING CHA/CHY",5121,"HK1003-Rev.0E-3",TT_Task,"55902",-,-,-,100,TK_Complete,23/06/2021,23/06/2021,08/09/2021,08/09/2021,"SI--3331-32 FS,SI--CHY2-75 FS","SI--3331-32,SI--CHY2-75","SI--CHY2-85 FS","SI--CHY2-85",46,46,57,57,10,10,13,13,18,,"HK1003 -Blackpoint D2 - Rev.0E DD30092021"
1-1217,SI20UCA7-15,"ERECTION CONTROL ROOM CCR FURNITURE AND HMI EQUIPMENT UCA",5121,"HK1003-Rev.0E-3",TT_Task,"55902",-,-,-,0,TK_NotStart,28/06/2022,,11/08/2022,,"SI20UCA7-08 FS,SI--CP-4-28 FS","SI20UCA7-08,SI--CP-4-28","SI--BRU7-19# FF,SI--BRU7-19# SS,SI20CR-8-10 FS,SI20BZK7B28 SS,SI20BZK7B26 FS,SI--BRU8-22 FS,SI20UBA8-12 FS,SI--2226-55 FS,SI--2222-35 FS,SI20BZK7D10# FF,SI20UBY5-61 SS,SI20BZK7B01 SS","SI--BRU7-19#,SI--BRU7-19#,SI20CR-8-10,SI20BZK7B28,SI20BZK7B26,SI--BRU8-22,SI20UBA8-12,SI--2226-55,SI--2222-35,SI20BZK7D10#,SI20UBY5-61,SI20BZK7B01",99,,105,,23,,24,,71,1120,"HK1003 -Blackpoint D2 - Rev.0E DD30092021"
1-1218,SI20CR-8-25,"COMMISSIONING CONTROL ROOM EQUIPMENT",5121,"HK1003-Rev.0E-3",TT_Task,"55902",-,-,-,0,TK_NotStart,21/02/2023,,06/03/2023,,"SI--BRU8-21 FS,SI20CR-8-10 FS,SI-PM-40 FS,SI20BUK8-50 FS,SI20TPI23A7-20 FS","SI--BRU8-21,SI20CR-8-10,SI-PM-40,SI20BUK8-50,SI20TPI23A7-20","SI20B--8-50 FS,SI20CJ-8-25 SS","SI20B--8-50,SI20CJ-8-25",133,,135,,31,,31,,91,16,"HK1003 -Blackpoint D2 - Rev.0E DD30092021"
1-1219,SI--C--2-85,"CONTRACT INTO FORCE BOP I&C",5121,"HK1003-Rev.0E-3",TT_Mile,"55902",-,-,-,100,TK_Complete,09/04/2021,09/04/2021,09/04/2021,09/04/2021,"SI-----1-05 SS,SI--C--2-80 FS","SI-----1-05,SI--C--2-80","SI--C--3E26 SS,SI20CFE3-25 SS,SI--C--2-30# SS,SI--C--2-50 SS,SI--BZK3-25 FS,SI--C--2A40 FS,SI--C--2B00 SS,SI--C--3E27 FS,SI20CJ-3-20 FS,SI20BZK3-25 FS,SI--CP-3-25 FS,SI20CJ-3-21 FS,SI--C--2C55 FS,SI20CJ-3-54 FS","SI--C--3E26,SI20CFE3-25,SI--C--2-30#,SI--C--2-50,SI--BZK3-25,SI--C--2A40,SI--C--2B00,SI--C--3E27,SI20CJ-3-20,SI20BZK3-25,SI--CP-3-25,SI20CJ-3-21,SI--C--2C55,SI20CJ-3-54",35,35,35,35,8,8,8,8,7,,"HK1003 -Blackpoint D2 - Rev.0E DD30092021"
1-1220,SI--2222-33,"COMMISSIONING MANUAL - ST / GENERATOR / COND.",5121,"HK1003-Rev.0E-3",TT_Mile,"55902",-,-,-,0,TK_NotStart,21/01/2023,,21/01/2023,,"SI-----1-03 SS,SI20MA-6B84 FS","SI-----1-03,SI20MA-6B84","SI20MA-8-10 SS","SI20MA-8-10",129,,129,,30,,30,,88,672,"HK1003 -Blackpoint D2 - Rev.0E DD30092021"
1-1221,SI20EK-6-40,"(RFP) READY FOR PIPE CONNECTION GAS SYSTEM 20EKG",5121,"HK1003-Rev.0E-3",TT_FinMile,"55902",-,-,-,0,TK_NotStart,28/01/2023,,28/01/2023,,"SI20EK-6-15 SS","SI20EK-6-15","SI20EKT6I15 FF,SI20EKG6H15 FF,SI20EKG6H17 FF","SI20EKT6I15,SI20EKG6H15,SI20EKG6H17",130,,130,,30,,30,,89,496,"HK1003 -Blackpoint D2 - Rev.0E DD30092021"
1-1222,SI--BAW4-40,"(OTD-OS) ON SITE MATERIAL IN- / OUTDOOR GROUNDING BAW",5121,"HK1003-Rev.0E-3",TT_FinMile,"55902",-,-,-,0,TK_NotStart,31/05/2022,,31/05/2022,,"SI--BAW4-25 FS","SI--BAW4-25","SI20BAW5C23 FS,SI20BAW5C17 FS,SI20BAW5A18 FS,SI20BAW5C15 FS,SI20BAW5A16 FS,SI20BAW5C16 FS,SI20BAW5B15 FS","SI20BAW5C23,SI20BAW5C17,SI20BAW5A18,SI20BAW5C15,SI20BAW5A16,SI20BAW5C16,SI20BAW5B15",95,,95,,22,,22,,67,1560,"HK1003 -Blackpoint D2 - Rev.0E DD30092021"
1-1223,SI20HAD8F25,"COLD COMMISSIONING HRSG IP STEAM (FOR CHEM. CLEANING) 20HAD50",5121,"HK1003-Rev.0E-3",TT_Task,"55902",-,-,-,0,TK_NotStart,29/04/2023,,12/05/2023,,"SI20HAD8F10 FS,SI20HAA8E17 FS,SI20BF-8-25 SS,SI20CPC8-25 FS,SI-PM-40 FS,SI-P222-83 FS","SI20HAD8F10,SI20HAA8E17,SI20BF-8-25,SI20CPC8-25,SI-PM-40,SI-P222-83","SI20HA-8-25# SS,SI20--P6-75 FS,SI20HA-8-25# FF","SI20HA-8-25#,SI20--P6-75,SI20HA-8-25#",143,,144,,33,,33,,96,0,"HK1003 -Blackpoint D2 - Rev.0E DD30092021"
1-1224,SI20TP-230&,"TP-I12 - EXISTING STATION DCIS PANEL (00UCA)",5121,"HK1003-Rev.0E-3",TT_Mile,"55902",-,-,-,0,TK_NotStart,30/06/2022,,30/06/2022,,"SI-----1-05 FS,SI-----1-05 SS,SI20TPI12A6-20 SS","SI-----1-05,SI-----1-05,SI20TPI12A6-20","SI20CH-8A25 FS","SI20CH-8A25",99,,99,,23,,23,,71,2072,"HK1003 -Blackpoint D2 - Rev.0E DD30092021"
1-1225,SI20MAD6-70,"BEARING CASINGS READY FOR OPERATION",5121,"HK1003-Rev.0E-3",TT_FinMile,"55902",-,-,-,0,TK_NotStart,13/03/2023,,13/03/2023,,"SI20MAV6-55 FS","SI20MAV6-55","SI20MAD8-10 FS,SI20MAD6-71 FF","SI20MAD8-10,SI20MAD6-71",136,,136,,31,,31,,92,96,"HK1003 -Blackpoint D2 - Rev.0E DD30092021"
1-1226,SI20CJ-8-10,"(TOP-20CJ) AUTOMATION SYSTEM 20CJ",5121,"HK1003-Rev.0E-3",TT_FinMile,"55902",-,-,-,0,TK_NotStart,21/02/2023,,21/02/2023,,"SI20BUK8-50 SS,SI20BZP7-160 FS,SI--9998-20& SS,SI--B--2-68 FS,SI20UBA4-42 FS,SI20UBA7-17 FS,SI20UBA7-104 FS,SI20BZK7A28 FS,SI--B--2-93 FS","SI20BUK8-50,SI20BZP7-160,SI--9998-20&,SI--B--2-68,SI20UBA4-42,SI20UBA7-17,SI20UBA7-104,SI20BZK7A28,SI--B--2-93","SI20CJ-8-25 FS","SI20CJ-8-25",133,,133,,31,,31,,91,16,"HK1003 -Blackpoint D2 - Rev.0E DD30092021"
1-1227,SI20BAA7-56,"CLOSING BUSDUCT AND LEAKAGE TEST 20BAA",5121,"HK1003-Rev.0E-3",TT_Task,"55902",-,-,-,0,TK_NotStart,14/01/2023,,20/01/2023,,"SI20BAA7-65 FS,SI20BAA7L55 FS,SI20BAA7-15 FS","SI20BAA7-65,SI20BAA7L55,SI20BAA7-15","SI20MKA9-42 FS,SI20B--8-50 FS,SI20BA-8-11 FS","SI20MKA9-42,SI20B--8-50,SI20BA-8-11",128,,128,,29,,30,,88,432,"HK1003 -Blackpoint D2 - Rev.0E DD30092021"
1-1228,SI20PAD8-10,"(TOP-20PAD) WET CELL HYBRID COOLING TOWER",5121,"HK1003-Rev.0E-3",TT_FinMile,"55902",-,-,-,0,TK_NotStart,18/05/2023,,18/05/2023,,"SI20PAD7-33 FS,SI20BZP7-95 FS,SI20PAD7-35 FS,SI--9998-23& FS,SI20PAD7-36 FS,SI20PAD6-45 FS,SI20PAD6-47 FS,SI20PAD6-39 FS,SI20PAD6-42 FS,SI20PAD6-48 FS,SI20PAD6-43 FS,SI20PAD6-69 FS,SI20PAD6-66 FS,SI20PAD6-68 FS,SI20PAD6-67 FS,SI20PAD6-65 FS,SI20PAD6-64 FS,SI20PAD6-40 FS,SI20PAD6-41 FS,SI20PAD6-62 FS,SI20PAD6-63 FS,SI20BZK7B46 FS,SI20URA3-25 FS,SI20BZK7B47 FS","SI20PAD7-33,SI20BZP7-95,SI20PAD7-35,SI--9998-23&,SI20PAD7-36,SI20PAD6-45,SI20PAD6-47,SI20PAD6-39,SI20PAD6-42,SI20PAD6-48,SI20PAD6-43,SI20PAD6-69,SI20PAD6-66,SI20PAD6-68,SI20PAD6-67,SI20PAD6-65,SI20PAD6-64,SI20PAD6-40,SI20PAD6-41,SI20PAD6-62,SI20PAD6-63,SI20BZK7B46,SI20URA3-25,SI20BZK7B47","SI20PAD8-45 FS,SI20PAD8-55 FS","SI20PAD8-45,SI20PAD8-55",145,,145,,34,,34,,97,64,"HK1003 -Blackpoint D2 - Rev.0E DD30092021"
1-1229,SI20LCB6B41,"(RFP) READY FOR PIPE CONNECTION CONDENSATE EXTRACTION PUMP 20LCB",5121,"HK1003-Rev.0E-3",TT_FinMile,"55902",-,-,-,0,TK_NotStart,05/08/2022,,05/08/2022,,"SI20LCB6B15 SS","SI20LCB6B15","SI20LCA6A15 FS,SI20LCW6H15 FS","SI20LCA6A15,SI20LCW6H15",104,,104,,24,,24,,76,344,"HK1003 -Blackpoint D2 - Rev.0E DD30092021"
1-1230,SI20LCB6B10,"PLACING CONDENSATE EXTRACTION PUMP 20LCB",5121,"HK1003-Rev.0E-3",TT_Task,"55902",-,-,-,0,TK_NotStart,28/07/2022,,29/07/2022,,"SI20UMC5C45 FS,SI20LCB4B40 FS,SI20UMC5C55 FS","SI20UMC5C45,SI20LCB4B40,SI20UMC5C55","SI20LCB6B15 FS,SI20PGB6H17 FS","SI20LCB6B15,SI20PGB6H17",103,,103,,24,,24,,75,344,"HK1003 -Blackpoint D2 - Rev.0E DD30092021"
1-1231,SI20MAN6-15,"INSTALLATION BYPASS-STATION MAN (incl. VALVES AND PIPES) ""Umleitdampfeinf�hrung""",5121,"HK1003-Rev.0E-3",TT_Task,"55902",-,-,-,0,TK_NotStart,23/07/2022,,05/08/2022,,"SI20MAG6-26 FS,SP20MAN4-40 FS,SI20MA-5-25 FS,SI20MA-6A16# SS,SP20MAN4-25 FS,SI20MAG6-62 FS,SI---1P6A05 FS","SI20MAG6-26,SP20MAN4-40,SI20MA-5-25,SI20MA-6A16#,SP20MAN4-25,SI20MAG6-62,SI---1P6A05","SI20MAN6-36 FS,SI20MA-6A11 FS,SI20LBF6H47 FF","SI20MAN6-36,SI20MA-6A11,SI20LBF6H47",103,,104,,24,,24,,74,184,"HK1003 -Blackpoint D2 - Rev.0E DD30092021"
1-1232,SI20MA-6A55,"INSTALLATION ALL VALVE ACTUATORS FOR MAIN STEAM, REHEAT STOP AND CONTROL VALVES",5121,"HK1003-Rev.0E-3",TT_Task,"55902",-,-,-,0,TK_NotStart,31/08/2022,,27/09/2022,,"SI20MA-6A15 FS,SI20MA-6A20 FS","SI20MA-6A15,SI20MA-6A20","SI20MA-6E41 FS,SI20MAX6A65 FS,SI20MA-6A16# FF","SI20MA-6E41,SI20MAX6A65,SI20MA-6A16#",108,,112,,25,,26,,79,888,"HK1003 -Blackpoint D2 - Rev.0E DD30092021"
1-1233,SI20MA-6A25,"IP-VALVE READY FOR PRE-ASSEMBLING LBB-PIPING",5121,"HK1003-Rev.0E-3",TT_Mile,"55902",-,-,-,0,TK_NotStart,31/08/2022,,31/08/2022,,"SI20MA-6A20 FS,SI20MA-6C55 FS,SI20MA-6A60 FS","SI20MA-6A20,SI20MA-6C55,SI20MA-6A60","SI20MA-8-10 SS,SI20LBB6J15 FS,SI20LBB6J17 FS","SI20MA-8-10,SI20LBB6J15,SI20LBB6J17",108,,108,,25,,25,,79,896,"HK1003 -Blackpoint D2 - Rev.0E DD30092021"
1-1234,SI20MA-6A60,"LBC-FLAP READY FOR PRE-ASSEMBLING LBC-PIPING",5121,"HK1003-Rev.0E-3",TT_Mile,"55902",-,-,-,0,TK_NotStart,24/08/2022,,24/08/2022,,"SI20MA-6C55 FS,SI20MA-6A15 FS","SI20MA-6C55,SI20MA-6A15","SI20MA-8-10 SS,SI20MA-6A25 FS","SI20MA-8-10,SI20MA-6A25",107,,107,,25,,25,,78,952,"HK1003 -Blackpoint D2 - Rev.0E DD30092021"
1-1235,SI20MAX6A65,"ALL VALVES READY FOR PRE-ASSEMBLING MAX-PIPING",5121,"HK1003-Rev.0E-3",TT_Mile,"55902",-,-,-,0,TK_NotStart,20/11/2022,,20/11/2022,,"SI20MA-6A30 SS,SI20MA-6A55 FS","SI20MA-6A30,SI20MA-6A55","SI20MAX6H15 FS,SI20MAX6H16 FS,SI20MA-8B25 SS,SI20MA-8-10 SS","SI20MAX6H15,SI20MAX6H16,SI20MA-8B25,SI20MA-8-10",120,,120,,28,,28,,85,464,"HK1003 -Blackpoint D2 - Rev.0E DD30092021"
1-1236,SI--ULA2-70,"DETAIL DESIGN CONCRETE STRUCTURE 20ULA",5121,"HK1003-Rev.0E-3",TT_Task,"55902",-,-,-,100,TK_Complete,19/05/2021,19/05/2021,02/07/2021,02/07/2021,"SI--ULA2-77 FS,SI--ULA2-60 FS,SI--2222-104 FS","SI--ULA2-77,SI--ULA2-60,SI--2222-104","SI--ULA2-50 FF,SI--ULA2-75 FS,SI--ULA2-71 FS,SI--ULA2-78 FS","SI--ULA2-50,SI--ULA2-75,SI--ULA2-71,SI--ULA2-78",41,41,47,47,9,9,11,11,13,,"HK1003 -Blackpoint D2 - Rev.0E DD30092021"
1-1237,SI--ULA2-75,"(F) CONCRETE STRUCTURE DWGS ON SITE RELEASED FOR EXECUTION 20ULA",5121,"HK1003-Rev.0E-3",TT_FinMile,"55902",-,-,-,100,TK_Complete,07/09/2021,07/09/2021,07/09/2021,07/09/2021,"SI--ULA2-71 FS,SI--ULA2-70 FS,SI--ULA2-50 FS,SI--ULA2-82 FS","SI--ULA2-71,SI--ULA2-70,SI--ULA2-50,SI--ULA2-82","SI20ULA5-05 FS,SI20ULA5-05.00 FS","SI20ULA5-05,SI20ULA5-05.00",57,57,57,57,13,13,13,13,28,,"HK1003 -Blackpoint D2 - Rev.0E DD30092021"
1-1238,SI--B--2-04,"PROJECT SPECIFIC BASIC ELECTRICAL REQUIREMENTS (LIGHTING/ GROUNDING/ CABLING) FOR HRSG",5121,"HK1003-Rev.0E-3",TT_FinMile,"55902",-,-,-,100,TK_Complete,28/01/2021,28/01/2021,28/01/2021,28/01/2021,"SI--B--2-81 FS,SI--HA-2-81 FF,SI-----1-05 FS","SI--B--2-81,SI--HA-2-81,SI-----1-05","SI--HA-2-05 FF","SI--HA-2-05",25,25,25,25,6,6,6,6,3,,"HK1003 -Blackpoint D2 - Rev.0E DD30092021"
1-1239,SP20MKA3-80,"(RFS-FAS) READY FOR SHIPMENT GEN. 20MKA",5121,"HK1003-Rev.0E-3",TT_Mile,"55902",-,-,-,0,TK_NotStart,30/04/2022,,30/04/2022,,"SP20MKA4-10 FS","SP20MKA4-10","SI20MKA4-25 FS","SI20MKA4-25",91,,91,,21,,21,,60,376,"HK1003 -Blackpoint D2 - Rev.0E DD30092021"
1-1240,SI20SG-3-25,"DETAIL DESIGN / MANUFACTURING FIRE FIGHTING SYSTEMS 20SGC/SGE/SGF/SGJ",5121,"HK1003-Rev.0E-3",TT_Task,"55902",-,-,-,12,TK_Active,10/09/2021,10/09/2021,24/02/2022,,"SI--SG-2-50 FS,SI--SG-2-18 FS,SI--SG-2-85 FS,SI--SG-2-50 SS,SI--SG-2-95 FS","SI--SG-2-50,SI--SG-2-18,SI--SG-2-85,SI--SG-2-50,SI--SG-2-95","SI20SG-3-70 FS,SI--SGA3A25 SS","SI20SG-3-70,SI--SGA3A25",57,57,81,,13,13,19,,29,512,"HK1003 -Blackpoint D2 - Rev.0E DD30092021"
1-1241,SP20CJP3A25,"MANUFACTURING GT I&C CABINETS",5121,"HK1003-Rev.0E-3",TT_Task,"55902",-,-,-,36,TK_Active,21/08/2021,21/08/2021,10/12/2021,,"SP20CJP2-70 FS,SP--MB-2-86 FS,SI--C--2C55 FS,SI--C--2C50 FS","SP20CJP2-70,SP--MB-2-86,SI--C--2C55,SI--C--2C50","SP20CJP3A10 FS","SP20CJP3A10",55,55,70,,12,12,16,,27,1320,"HK1003 -Blackpoint D2 - Rev.0E DD30092021"
1-1242,SP20CJP3A10,"TRANSPORT GT I&C CABINETS CJ-/CPA TO ELECTRICAL MODULES MANUFACTURER",5121,"HK1003-Rev.0E-3",TT_Task,"55902",-,-,-,0,TK_NotStart,11/12/2021,,16/12/2021,,"SP20CJP3A25 FS","SP20CJP3A25","SP20CJP3A11 FS","SP20CJP3A11",71,,71,,16,,16,,42,1320,"HK1003 -Blackpoint D2 - Rev.0E DD30092021"
1-1243,SP20MAD3-80,"(RFS) READY FOR SHIPMENT (NORTH SEA PORT) ST BEARINGS 20MAD",5121,"HK1003-Rev.0E-3",TT_FinMile,"55902",-,-,-,0,TK_NotStart,27/04/2022,,27/04/2022,,"SP20MAD3-25 FS,SP20MAD4-10 FS","SP20MAD3-25,SP20MAD4-10","SI20MAD4-25 FS","SI20MAD4-25",90,,90,,21,,21,,59,32,"HK1003 -Blackpoint D2 - Rev.0E DD30092021"
1-1244,SI--2222-21,"INPUTS FOR OPERATING MANUAL (BHB)",5121,"HK1003-Rev.0E-3",TT_Mile,"55902",-,-,-,0,TK_NotStart,11/02/2023,,11/02/2023,,"SI--2222-10 SS","SI--2222-10","SI--2222-22 SS","SI--2222-22",132,,132,,30,,30,,90,104,"HK1003 -Blackpoint D2 - Rev.0E DD30092021"
1-1245,SI--1102-10,"PRELIMINARY O&M DOCUMENTATION",5121,"HK1003-Rev.0E-3",TT_Mile,"55902",-,-,-,0,TK_NotStart,19/03/2023,,19/03/2023,,"SI-----1-03 SS","SI-----1-03","SI20MBA8-10 SS","SI20MBA8-10",137,,137,,32,,32,,93,8,"HK1003 -Blackpoint D2 - Rev.0E DD30092021"
1-1246,SI--2222-70,"NOISE PROTECTION CONCEPT",5121,"HK1003-Rev.0E-3",TT_Task,"55902",-,-,-,100,TK_Complete,17/01/2021,17/01/2021,27/02/2021,27/02/2021,"SI-----1-01 SS,SI-----1-05 FS","SI-----1-01,SI-----1-05","SI--PM-2-30 FS,SP--MKA2B41 FS,SI--2222-133 FS,SI--2222-71 SS","SI--PM-2-30,SP--MKA2B41,SI--2222-133,SI--2222-71",24,24,30,30,5,5,7,7,2,,"HK1003 -Blackpoint D2 - Rev.0E DD30092021"
1-1247,SI--3331-61,"SITE REGULATIONS (FINAL) AVAILABLE",5121,"HK1003-Rev.0E-3",TT_Mile,"55902",-,-,-,100,TK_Complete,15/08/2020,15/08/2020,15/08/2020,15/08/2020,"SI-----1-03 SS","SI-----1-03","SI--3331-32 SS","SI--3331-32",2,2,2,2,0,0,0,0,0,,"HK1003 -Blackpoint D2 - Rev.0E DD30092021"
1-1248,SI20SMG3-80,"(RFS) READY FOR SHIPMENT OTHER CRANES AND HOIST",5121,"HK1003-Rev.0E-3",TT_FinMile,"55902",-,-,-,0,TK_NotStart,27/04/2022,,27/04/2022,,"SI20SMG4-10 FS","SI20SMG4-10","SI20SMG4-25 FS","SI20SMG4-25",90,,90,,21,,21,,59,2424,"HK1003 -Blackpoint D2 - Rev.0E DD30092021"
1-1249,SI20SMG2-85,"CONTRACT INTO FORCE OTHER CRANES AND HOIST",5121,"HK1003-Rev.0E-3",TT_Mile,"55902",-,-,-,0,TK_NotStart,11/11/2021,,11/11/2021,,"SI20SMG2-80 FS,SI20SMG2-75 FS","SI20SMG2-80,SI20SMG2-75","SI20SMG3-25 FS","SI20SMG3-25",66,,66,,15,,15,,38,2424,"HK1003 -Blackpoint D2 - Rev.0E DD30092021"
1-1250,SI20SMG4-40,"(OTD-OS) ON SITE OTHER CRANES AND HOIST",5121,"HK1003-Rev.0E-3",TT_FinMile,"55902",-,-,-,0,TK_NotStart,22/06/2022,,22/06/2022,,"SI20SMG4-25 FS","SI20SMG4-25","SI20SMG6-19 FS","SI20SMG6-19",98,,98,,23,,23,,70,2424,"HK1003 -Blackpoint D2 - Rev.0E DD30092021"
1-1251,SI20PAB6A15,"ERECTION, NDT, PT / VALVES (MECHANICAL) 20PAB UMC",5121,"HK1003-Rev.0E-3",TT_Task,"55902",-,-,-,0,TK_NotStart,20/08/2022,,16/09/2022,,"SI20UPY5P45 FS,SI--P--2-50 FS,SI20PAB5-105 FS,SI20--P6A00& SS,SI20MAG6-40 FS,SI20MAG6-34 FS,SI20MAG6-38 FS,SI20MAG6-39 FS,SI---1P6A05 FS","SI20UPY5P45,SI--P--2-50,SI20PAB5-105,SI20--P6A00&,SI20MAG6-40,SI20MAG6-34,SI20MAG6-38,SI20MAG6-39,SI---1P6A05","SI20PCB6H15 SS,SI20PGB8-10 FS,SI20PAH8-25 FS,SI20PAH6-15 FF,SI20PA-6H70 FS,SI20PAB7A15 FF,SI20PAH6H15 FS,SI20PAB8-05 FS,SI20-6-16# FF,SI20-6-16# SS,SI20PCB8M10 FS,SI20PCB8M25 FS","SI20PCB6H15,SI20PGB8-10,SI20PAH8-25,SI20PAH6-15,SI20PA-6H70,SI20PAB7A15,SI20PAH6H15,SI20PAB8-05,SI20-6-16#,SI20-6-16#,SI20PCB8M10,SI20PCB8M25",107,,110,,24,,25,,78,520,"HK1003 -Blackpoint D2 - Rev.0E DD30092021"
1-1252,SI--3332-17,"INPUT FOR EL.SPECS. (BLACK BOXES, MOTORS) AVAILABLE",5121,"HK1003-Rev.0E-3",TT_FinMile,"55902",-,-,-,100,TK_Complete,21/01/2021,21/01/2021,21/01/2021,21/01/2021,"SI-----1-03 FS,SI--3331-31 FS,SI-----1-05 FS","SI-----1-03,SI--3331-31,SI-----1-05","SI--3332-75 FS,SI20PUR2J80 FS","SI--3332-75,SI20PUR2J80",24,24,24,24,5,5,5,5,2,,"HK1003 -Blackpoint D2 - Rev.0E DD30092021"
1-1253,SI--P--2-35,"DESIGN DATA SHEETS P-COMPONENTS",5121,"HK1003-Rev.0E-3",TT_Task,"55902",-,-,-,100,TK_Complete,03/11/2020,03/11/2020,02/03/2021,02/03/2021,"SI--3332-02 FS,SI--3332-02 SS,SI-----1-01 FS,SI20---2M10 FS","SI--3332-02,SI--3332-02,SI-----1-01,SI20---2M10","SI---1P2A529 FS,SI---1P2A528 FS,SI--PM-2-30 FS,SI--P--2-45 FS,SI--P--2I45 FS,SI--PAC2B45 SS,SI---1P2A513 FS","SI---1P2A529,SI---1P2A528,SI--PM-2-30,SI--P--2-45,SI--P--2I45,SI--PAC2B45,SI---1P2A513",13,13,30,30,3,3,7,7,0,,"HK1003 -Blackpoint D2 - Rev.0E DD30092021"
1-1254,SI--P--2-45,"DESIGN DATA SHEETS FOR ALL P-COMPONENTS AVAILABLE",5121,"HK1003-Rev.0E-3",TT_FinMile,"55902",-,-,-,100,TK_Complete,03/03/2021,03/03/2021,03/03/2021,03/03/2021,"SI--P--2-35 FS,SI--M--2D00 FS,SI--P--2-81 FS","SI--P--2-35,SI--M--2D00,SI--P--2-81","SI20PAH2-80 FF","SI20PAH2-80",30,30,30,30,7,7,7,7,5,,"HK1003 -Blackpoint D2 - Rev.0E DD30092021"
1-1255,SI--G--2I45,"DESIGN DATA SHEETS SAFETY VALVES GHC SYSTEM",5121,"HK1003-Rev.0E-3",TT_Mile,"55902",-,-,-,100,TK_Complete,14/05/2021,14/05/2021,14/05/2021,14/05/2021,"SI-----1-03 SS,SI--G--2-35 FS","SI-----1-03,SI--G--2-35","SI--L--2I45 FS,SI--L--2I46 FS,SI--G--2I35 FS","SI--L--2I45,SI--L--2I46,SI--G--2I35",40,40,40,40,9,9,9,9,12,,"HK1003 -Blackpoint D2 - Rev.0E DD30092021"
1-1256,SI20ZTB6A00,"TEMPORARY PIPE INSTALLATION FOR STEAM BLOWING ZTB",5121,"HK1003-Rev.0E-3",TT_Task,"55902",-,-,-,0,TK_NotStart,22/04/2023,,12/05/2023,,"SI--ZTB4A40 FS,SI--ZTA2-35 FS,SI20LBG6A15 FS,SI20LBB6J15 FS,SI20HA-6-56 FF,SI---1P6A9 FS","SI--ZTB4A40,SI--ZTA2-35,SI20LBG6A15,SI20LBB6J15,SI20HA-6-56,SI---1P6A9","SI20HA-9A45 FS,SI20--P6-75 FS","SI20HA-9A45,SI20--P6-75",142,,144,,33,,33,,96,0,"HK1003 -Blackpoint D2 - Rev.0E DD30092021"
1-1257,SI20ZTA6A00,"TEMPORARY PIPE INSTALLATION FOR CHEMICAL CLEANING ZTA",5121,"HK1003-Rev.0E-3",TT_Task,"55902",-,-,-,0,TK_NotStart,01/04/2023,,12/05/2023,,"SI20LBG6A15 FS,SI--ZTA2-35 FS,SI--ZTA4A40 FS,SI20HA-6-56 SS,SI20LBB6J15 FS,SI--ZTA4-25 FS,CL20UGX5-40 FS,SI---1P6A9 FS","SI20LBG6A15,SI--ZTA2-35,SI--ZTA4A40,SI20HA-6-56,SI20LBB6J15,SI--ZTA4-25,CL20UGX5-40,SI---1P6A9","SI20--P6-75 FS","SI20--P6-75",139,,144,,32,,33,,94,0,"HK1003 -Blackpoint D2 - Rev.0E DD30092021"
1-1258,SI20MAW6H45,"INSULATION PIPES / VALVES FOR STEAM SYSTEM MAW",5121,"HK1003-Rev.0E-3",TT_Task,"55902",-,-,-,0,TK_NotStart,18/02/2023,,24/03/2023,,"SI20MA-6E40 FS,SI20MAW6H15 FS,SI-P2I-15 FS","SI20MA-6E40,SI20MAW6H15,SI-P2I-15","SI20MAW8-10 FS,SI20MAW7H15 FF,SI20---6A15# FF","SI20MAW8-10,SI20MAW7H15,SI20---6A15#",133,,137,,31,,32,,91,528,"HK1003 -Blackpoint D2 - Rev.0E DD30092021"
1-1259,SI20MAW6H15,"ERECTION, NDT, PT PIPES / VALVES MAW",5121,"HK1003-Rev.0E-3",TT_Task,"55902",-,-,-,0,TK_NotStart,02/10/2022,,24/12/2022,,"SI20MAL6A15 FF,SI20MA-6-65 FS,SI20LBG6C40 FS,SI20MAW6-40 FS,SI---1P6A05 FS","SI20MAL6A15,SI20MA-6-65,SI20LBG6C40,SI20MAW6-40,SI---1P6A05","SI20MAW8-10 FS,SI20MAW6H45 FS,SI20-6-16# FF,SI20-6-16# SS","SI20MAW8-10,SI20MAW6H45,SI20-6-16#,SI20-6-16#",113,,125,,26,,29,,82,968,"HK1003 -Blackpoint D2 - Rev.0E DD30092021"
1-1260,SP--MB-3G75,"PROCUREMENT/ MANUFACTURING GT INSULATION MB-",5121,"HK1003-Rev.0E-3",TT_Task,"55902",-,-,-,0,TK_NotStart,30/10/2021,,01/04/2022,,"SP20MB-3-25 FF,SP20MB-3-26 FS,SI--3331-35 FS,SI-----1-04 SS","SP20MB-3-25,SP20MB-3-26,SI--3331-35,SI-----1-04","SP--MB-3-70 FS","SP--MB-3-70",65,,86,,15,,20,,36,560,"HK1003 -Blackpoint D2 - Rev.0E DD30092021"
1-1261,SI20LBG2C60,"(DF) INPUT FOR MS3 EL. SUPERHEATER LBG",5121,"HK1003-Rev.0E-3",TT_FinMile,"55902",-,-,-,100,TK_Complete,28/05/2021,28/05/2021,28/05/2021,28/05/2021,"SI-----1-03 FS,SI20LBG2C85 FS","SI-----1-03,SI20LBG2C85","SI20UMC2B10 FS","SI20UMC2B10",42,42,42,42,10,10,10,10,14,,"HK1003 -Blackpoint D2 - Rev.0E DD30092021"
1-1262,SI--2223-54,"DESIGN,PREFABRICATION, TRANSPORT KKS PLANT LABELLING",5121,"HK1003-Rev.0E-3",TT_Task,"55902",-,-,-,0,TK_NotStart,07/09/2022,,24/01/2023,,"SI--2222-85 FS","SI--2222-85","SI--2226-56 FS,SI--2226-57 FS,SI--2226-55 FS","SI--2226-56,SI--2226-57,SI--2226-55",109,,129,,25,,30,,80,80,"HK1003 -Blackpoint D2 - Rev.0E DD30092021"
1-1263,SP20MKA3B80,"(RFS) READY FOR SHIPMENT GENERATOR SKIDS 20MKA",5121,"HK1003-Rev.0E-3",TT_FinMile,"55902",-,-,-,0,TK_NotStart,29/04/2022,,29/04/2022,,"SP20MKA4-11 FS","SP20MKA4-11","SI20MKA4-25 FS","SI20MKA4-25",90,,90,,21,,21,,60,376,"HK1003 -Blackpoint D2 - Rev.0E DD30092021"
1-1264,SI20MKW8H25,"COLD COMMISSIONING GEN SEAL OIL SYSTEM (COMM OIL FLUSHING)",5121,"HK1003-Rev.0E-3",TT_Task,"55902",-,-,-,0,TK_NotStart,16/06/2023,,22/06/2023,,"SI20MKW8-10 FS,SI20MBV8H25 SS,SI-PM-40 FS,SI20B--8-50 FS,SI20B--8-52 FS,SI20SCA8-17 SS,SI20PGB8B25 FS,SI20SGC8-37 FS","SI20MKW8-10,SI20MBV8H25,SI-PM-40,SI20B--8-50,SI20B--8-52,SI20SCA8-17,SI20PGB8B25,SI20SGC8-37","SI20MB-9-05 FS","SI20MB-9-05",149,,150,,34,,35,,98,8,"HK1003 -Blackpoint D2 - Rev.0E DD30092021"
1-1265,SI--BZL4-25,"TRANSPORT LIGHTING & SMALL POWER BZL",5121,"HK1003-Rev.0E-3",TT_Task,"55902",-,-,-,0,TK_NotStart,01/06/2022,,26/07/2022,,"SI--BZL3-80 FS","SI--BZL3-80","SI--BZL4-40 FS","SI--BZL4-40",95,,103,,22,,24,,67,240,"HK1003 -Blackpoint D2 - Rev.0E DD30092021"
1-1266,SI--BZL3-25,"DETAIL DESIGN LIGHTING & SMALL POWER BZL",5121,"HK1003-Rev.0E-3",TT_Task,"55902",-,-,-,0,TK_NotStart,23/10/2021,,02/02/2022,,"SI--BZL2-85 FS,SI--2222-30 FS","SI--BZL2-85,SI--2222-30","SI--BZL3-81 FS","SI--BZL3-81",64,,78,,14,,18,,35,240,"HK1003 -Blackpoint D2 - Rev.0E DD30092021"
1-1267,SI20MBL6-20,"ERECTION FILTERHOUSE 20MBL",5121,"HK1003-Rev.0E-3",TT_Task,"55902",-,-,-,0,TK_NotStart,25/09/2022,,26/11/2022,,"SI20MBL6-15 SS,SI20MBL6-26 FS","SI20MBL6-15,SI20MBL6-26","SI20MBL7-25 SS,SI20MBL6-25 FS,SI20BZP7-150 FS","SI20MBL7-25,SI20MBL6-25,SI20BZP7-150",112,,121,,26,,28,,82,168,"HK1003 -Blackpoint D2 - Rev.0E DD30092021"
1-1268,SI20MBL6-25,"ERECTION AIR INTAKE SILENCER BAFFELS 20MBL",5121,"HK1003-Rev.0E-3",TT_Task,"55902",-,-,-,0,TK_NotStart,27/11/2022,,10/12/2022,,"SI20MBL6-15 FS,SI20MBL6-20 FS","SI20MBL6-15,SI20MBL6-20","SI20MBL8-10 FS,SI20MA-6B84 FS","SI20MBL8-10,SI20MA-6B84",121,,123,,28,,28,,86,168,"HK1003 -Blackpoint D2 - Rev.0E DD30092021"
1-1269,SI20UMC5B10,"(HS) START ERECTION STEEL STRUCTURE/ CRANE RAILS 20UMC",5121,"HK1003-Rev.0E-3",TT_Mile,"55902",-,-,-,0,TK_NotStart,10/01/2022,,10/01/2022,,"SI20UMC3B25 FS,SI20UMC5Y45 FS,SI20UMC5B45 FS","SI20UMC3B25,SI20UMC5Y45,SI20UMC5B45","SI20UMC5B15# FS,SI20UMC5C55 FS,SI20UMC5B15 FS","SI20UMC5B15#,SI20UMC5C55,SI20UMC5B15",75,,75,,17,,17,,44,24,"HK1003 -Blackpoint D2 - Rev.0E DD30092021"
1-1270,SI20UMC5B15,"ERECTION STEEL STRUCTURE MAIN BUILDING / CRANE RAILS 20UMC",5121,"HK1003-Rev.0E-3",TT_Task,"55902",-,-,-,0,TK_NotStart,10/01/2022,,10/04/2022,,"SI20UMC5B10 FS","SI20UMC5B10","SI20UMC5B49 FS,SI20UMC5B48 FF,SI20UMC5C55 FS,SI20UMC5B15# SS,SI20UMC5B47 FF,SI20MAG6-00 FS,SI20UMC5C15 FS,SI20UMC5C10 FS,SI20UBA5-7 SS,SI20UMC5E47 SS,SI20UMC5E49 FS,SI20UMC5E49 FF,SI20UMC5E55 FS,SI20UMC5E65 FS,SI20UMC5E67 FS,SI20UMC5E69 SS,SI20UMC5E71 FS,SI20UMC5E73 FS,SI20UMC5E75 FS,SI20UMC5E77 SS,SI20UMC5E51 SS,SI20UMC5E53 FS,SI20UMC5E57 SS,SI20UMC5E59 FS,SI20UMC5E61 FS,SI20UMC5E63 FS,SI20UMC5B15# FF,SI20UTG5-70.00 FS","SI20UMC5B49,SI20UMC5B48,SI20UMC5C55,SI20UMC5B15#,SI20UMC5B47,SI20MAG6-00,SI20UMC5C15,SI20UMC5C10,SI20UBA5-7,SI20UMC5E47,SI20UMC5E49,SI20UMC5E49,SI20UMC5E55,SI20UMC5E65,SI20UMC5E67,SI20UMC5E69,SI20UMC5E71,SI20UMC5E73,SI20UMC5E75,SI20UMC5E77,SI20UMC5E51,SI20UMC5E53,SI20UMC5E57,SI20UMC5E59,SI20UMC5E61,SI20UMC5E63,SI20UMC5B15#,SI20UTG5-70.00",75,,88,,17,,20,,44,24,"HK1003 -Blackpoint D2 - Rev.0E DD30092021"
1-1271,SI20LBH3D80,"(RFS) READY FOR SHIPMENT BLOW DOWN TANK 20LBH",5121,"HK1003-Rev.0E-3",TT_FinMile,"55902",-,-,-,0,TK_NotStart,09/03/2022,,09/03/2022,,"SI20LBH4B10 FS","SI20LBH4B10","SI20LBH4D25 FS","SI20LBH4D25",83,,83,,19,,19,,52,456,"HK1003 -Blackpoint D2 - Rev.0E DD30092021"
1-1272,SI20USX2-40,"(F) CONCRETE STRUCTURE DWGS ON SITE RELEASED FOR EXECUTION 20USX",5121,"HK1003-Rev.0E-3",TT_FinMile,"55902",-,-,-,0,TK_NotStart,10/07/2022,,10/07/2022,,"SI20USX2-15 FS,SI20USX2-35 FS,SI20USX2-43 FS","SI20USX2-15,SI20USX2-35,SI20USX2-43","SI20USX5-10 FS","SI20USX5-10",101,,101,,23,,23,,73,1632,"HK1003 -Blackpoint D2 - Rev.0E DD30092021"
1-1273,SI20USX5-25,"(RFE) FOUNDATION 20USX",5121,"HK1003-Rev.0E-3",TT_FinMile,"55902",-,-,-,0,TK_NotStart,06/08/2022,,06/08/2022,,"SI20USX5-15 FS,SI20USX5-15.03 FS","SI20USX5-15,SI20USX5-15.03","SI20QC-6-15 FS","SI20QC-6-15",105,,105,,24,,24,,77,1632,"HK1003 -Blackpoint D2 - Rev.0E DD30092021"
1-1274,SI--PAC2B75,"CONTRACT REVIEW / PREP. CIRC. CW PUMP PAC",5121,"HK1003-Rev.0E-3",TT_Task,"55902",-,-,-,100,TK_Complete,19/12/2020,19/12/2020,29/01/2021,29/01/2021,"SI--PAC2B86 FF,SI--G--2-20 FS,SI-----1-03 SS","SI--PAC2B86,SI--G--2-20,SI-----1-03","SI--PAC2B14 FS,SI--PAC2B80 FS","SI--PAC2B14,SI--PAC2B80",20,20,25,25,4,4,6,6,1,,"HK1003 -Blackpoint D2 - Rev.0E DD30092021"
1-1275,SI--HA-2A40,"AGREED PIPING DESIGN BASIC REPORT (PDBR)",5121,"HK1003-Rev.0E-3",TT_Mile,"55902",-,-,-,100,TK_Complete,12/12/2020,12/12/2020,12/12/2020,12/12/2020,"SI--HA-2A11 FS,SI--HA-2E15 FS","SI--HA-2A11,SI--HA-2E15","SI--HA-3E25 FS,SI--HA-3E27 FS,SI--HA-3E26 FS,SI--HA-2A55 FS","SI--HA-3E25,SI--HA-3E27,SI--HA-3E26,SI--HA-2A55",19,19,19,19,4,4,4,4,1,,"HK1003 -Blackpoint D2 - Rev.0E DD30092021"
1-1276,SI20MBA6A15,"ERECTION, NDT, PT / VALVES 20MBA",5121,"HK1003-Rev.0E-3",TT_Task,"55902",-,-,-,0,TK_NotStart,29/10/2022,,06/01/2023,,"SI20MBA6-40 FS,SI20MBA6D40 FS,SI---5P6A09 FS","SI20MBA6-40,SI20MBA6D40,SI---5P6A09","SI20MBA8-10 FS,SI20MBX8-10 FS,SI20MBV8-10 FS,SI20MBL8-10 FS,SI20MBP8-10 FS,SI20MBX8E10 FS,SI20MBH8-10 FS,SI20MBA8D10 FS,SI20MBA8A10 FS,SI20MBA8B10 FS,SI20MB-7J15 FS,SI20-6-16# FF,SI20-6-16# SS,SI20MBA6A16 FS","SI20MBA8-10,SI20MBX8-10,SI20MBV8-10,SI20MBL8-10,SI20MBP8-10,SI20MBX8E10,SI20MBH8-10,SI20MBA8D10,SI20MBA8A10,SI20MBA8B10,SI20MB-7J15,SI20-6-16#,SI20-6-16#,SI20MBA6A16",117,,126,,27,,29,,84,504,"HK1003 -Blackpoint D2 - Rev.0E DD30092021"
1-1277,SI20CPA8-10,"(TOP-20CP-GT) INTERFACE PANELS IN FUNCTION AREA GAS TURBINE",5121,"HK1003-Rev.0E-3",TT_FinMile,"55902",-,-,-,0,TK_NotStart,27/02/2023,,27/02/2023,,"SI20UBA7-104 FS,SI20UBA7-25 SS,SI20UBA7-17 FS,SI20UBA7-15 SS,SI--9998-20& SS,SI20BZK7L25 FS,SI20BZK7F26 FS,SI20BZK7A26 FS,SI20BZK7A36 FS,SI20BZK7A25 FS,SI20BZK7A27 FS","SI20UBA7-104,SI20UBA7-25,SI20UBA7-17,SI20UBA7-15,SI--9998-20&,SI20BZK7L25,SI20BZK7F26,SI20BZK7A26,SI20BZK7A36,SI20BZK7A25,SI20BZK7A27","SI20CPA8-25 FS","SI20CPA8-25",134,,134,,31,,31,,92,256,"HK1003 -Blackpoint D2 - Rev.0E DD30092021"
1-1278,SI20SCA6-15,"ERECTION COMPRESSED AIR/INSTRUMENT AIR SYSTEM SCA/QFA AND INTERCONNECTING PIPIES",5121,"HK1003-Rev.0E-3",TT_Task,"55902",-,-,-,0,TK_NotStart,21/09/2022,,22/11/2022,,"SI20SCA2-05 FS,SI20SCA4-40 FS,SI20UMC5C55 FS","SI20SCA2-05,SI20SCA4-40,SI20UMC5C55","SI20SCA6-40 SS,SI20SCA7-15 FS","SI20SCA6-40,SI20SCA7-15",111,,120,,26,,28,,81,288,"HK1003 -Blackpoint D2 - Rev.0E DD30092021"
1-1279,SI20MAG5-25,"GROUTING OF CONDENSER SHELL SUPPORT STRUCTURE SEISMIC TIE DOWNS MAG20",5121,"HK1003-Rev.0E-3",TT_Task,"55902",-,-,-,0,TK_NotStart,02/10/2022,,06/10/2022,,"SI20MAG6-46 FS,SI20MAG6-52 FS","SI20MAG6-46,SI20MAG6-52","SI20MAG6-20# FF,SI20MAG6-59 FF","SI20MAG6-20#,SI20MAG6-59",113,,113,,26,,26,,82,1520,"HK1003 -Blackpoint D2 - Rev.0E DD30092021"
1-1280,SI20UEN5-45,"(RFE) FOUNDATION 20UEN",5121,"HK1003-Rev.0E-3",TT_FinMile,"55902",-,-,-,0,TK_NotStart,07/04/2022,,07/04/2022,,"SI20UEN5-15.03 FS","SI20UEN5-15.03","SI20EKG6H15 FS,SI20EK-6-15 FS,SI20EK-6-41 FS,SI20UEN3-12 FS,SI20BZL7C16 FS,SI20UEN5-15 FF","SI20EKG6H15,SI20EK-6-15,SI20EK-6-41,SI20UEN3-12,SI20BZL7C16,SI20UEN5-15",87,,87,,20,,20,,56,16,"HK1003 -Blackpoint D2 - Rev.0E DD30092021"
1-1281,SI20UEN5-10,"(H) START PLACING FORMWORK 20UEN",5121,"HK1003-Rev.0E-3",TT_Mile,"55902",-,-,-,0,TK_NotStart,12/02/2022,,12/02/2022,,"SI-----5-21& FS,SI--UEN2A76 FS,SI20UEN5-05.01 FS","SI-----5-21&,SI--UEN2A76,SI20UEN5-05.01","SI20UEN5-15 FS,SI20UEN5-15.00 FS","SI20UEN5-15,SI20UEN5-15.00",80,,80,,18,,18,,49,16,"HK1003 -Blackpoint D2 - Rev.0E DD30092021"
1-1282,SI20UTG2-20,"PREPARATION FOUNDATION GROUNDING DWGS UTG 20UTG01",5121,"HK1003-Rev.0E-3",TT_Task,"55902",-,-,-,0,TK_NotStart,07/10/2021,,20/10/2021,,"SI20UTG2-15 FF,SI20UTG2-5 FS","SI20UTG2-15,SI20UTG2-5","SI20UTG2-40 FS,SI20UTG2-25 FS,SI20UTG2-25 FF","SI20UTG2-40,SI20UTG2-25,SI20UTG2-25",61,,63,,14,,14,,32,2768,"HK1003 -Blackpoint D2 - Rev.0E DD30092021"
1-1283,SI20UTG2-15,"DETAIL DESIGN CONCRETE STRUCTURE 20UTG01",5121,"HK1003-Rev.0E-3",TT_Task,"55902",-,-,-,53,TK_Active,06/09/2021,06/09/2021,20/10/2021,,"SI20UTG2-10 FS,SI20UTG2-5 FS","SI20UTG2-10,SI20UTG2-5","SI20UTG2-20 FF,SI20UTG2-40 FS,SI20UTG2-25 FS","SI20UTG2-20,SI20UTG2-40,SI20UTG2-25",57,57,63,,13,13,14,,28,2768,"HK1003 -Blackpoint D2 - Rev.0E DD30092021"
1-1284,SI20UTG2-40,"(F) CONCRETE STRUCTURE DWGS ON SITE RELEASED FOR EXECUTION 20UTG01",5121,"HK1003-Rev.0E-3",TT_FinMile,"55902",-,-,-,0,TK_NotStart,17/04/2022,,17/04/2022,,"SI20UTG2-15 FS,SI20UTG2-20 FS,SI20UTG2-35 FS","SI20UTG2-15,SI20UTG2-20,SI20UTG2-35","SI20UTG5-10 FS","SI20UTG5-10",89,,89,,20,,20,,58,2600,"HK1003 -Blackpoint D2 - Rev.0E DD30092021"
1-1285,SP20MAV3-80,"(RFS) READY FOR SHIPMENT (NORTH SEA PORT) LUBE OIL MODULE 20MAV",5121,"HK1003-Rev.0E-3",TT_FinMile,"55902",-,-,-,0,TK_NotStart,29/04/2022,,29/04/2022,,"SP20MAV4-10 FS","SP20MAV4-10","SI20MAV4-25 FS","SI20MAV4-25",90,,90,,21,,21,,60,552,"HK1003 -Blackpoint D2 - Rev.0E DD30092021"
1-1286,SI--BFF2-80,"QUOTATION STAGE LV SWITCHGEAR FOR HRSG BFF/BMF",5121,"HK1003-Rev.0E-3",TT_Task,"55902",-,-,-,100,TK_Complete,28/05/2021,28/05/2021,08/07/2021,08/07/2021,"SI--BFF2-75 FS","SI--BFF2-75","SI--BFF2-85 FS","SI--BFF2-85",42,42,48,48,10,10,11,11,14,,"HK1003 -Blackpoint D2 - Rev.0E DD30092021"
1-1287,SI--BFF2-15,"BASIC DESIGN / SPECIFICATION LV SWITCHGEAR FOR HRSG BFF/BMF",5121,"HK1003-Rev.0E-3",TT_Task,"55902",-,-,-,100,TK_Complete,02/04/2021,02/04/2021,27/05/2021,27/05/2021,"SI--3331-32 FS,SI--3332-26 FS,SI-----1-01 SS,SI--HA-2-100 FS,SI--HA-2-85 FS","SI--3331-32,SI--3332-26,SI-----1-01,SI--HA-2-100,SI--HA-2-85","SI--BFF2-75 FS,SI20BFC2-15 SS","SI--BFF2-75,SI20BFC2-15",34,34,42,42,8,8,9,9,7,,"HK1003 -Blackpoint D2 - Rev.0E DD30092021"
1-1288,SI--BFF2-75,"RFQ LV SWITCHGEAR FOR HRSG BFF/BMF",5121,"HK1003-Rev.0E-3",TT_Mile,"55902",-,-,-,100,TK_Complete,28/05/2021,28/05/2021,28/05/2021,28/05/2021,"SI--BFF2-15 FS,SI--B--2A50 FS","SI--BFF2-15,SI--B--2A50","SI--BFF2-80 FS","SI--BFF2-80",42,42,42,42,10,10,10,10,14,,"HK1003 -Blackpoint D2 - Rev.0E DD30092021"
1-1289,SI20UBA5-45,"WORK PREPARATION / EXCAVATION FOUNDATION 20UBA1110/20",5121,"HK1003-Rev.0E-3",TT_Task,"55902",-,-,-,0,TK_NotStart,09/12/2021,,22/12/2021,,"SI20ULA5-45 FS,SI20UHA5-45 FF,SI-----5-21& FS,SI-----5-20 FS,SI-P222-84 FS,SI-P222-128 FS,SI20UBA2-40 FS","SI20ULA5-45,SI20UHA5-45,SI-----5-21&,SI-----5-20,SI-P222-84,SI-P222-128,SI20UBA2-40","SI20UBA5-50 FS,SI20UTG5-40 SS,SI20UHX5-05 SS,SI-P222-131# FF,SI-P222-131# SS","SI20UBA5-50,SI20UTG5-40,SI20UHX5-05,SI-P222-131#,SI-P222-131#",70,,72,,16,,16,,41,256,"HK1003 -Blackpoint D2 - Rev.0E DD30092021"
1-1290,SI20UBA5-50,"(H) START PLACING FORMWORK 20UBA1110/20",5121,"HK1003-Rev.0E-3",TT_Mile,"55902",-,-,-,0,TK_NotStart,23/12/2021,,23/12/2021,,"SI20UBA5-45 FS,SI-----5-21& FS","SI20UBA5-45,SI-----5-21&","SI20UBA5-55 FS,SI20UBA5-55.00 FS","SI20UBA5-55,SI20UBA5-55.00",72,,72,,16,,16,,43,256,"HK1003 -Blackpoint D2 - Rev.0E DD30092021"
1-1291,SI20CYE8-10,"(TOP-20CYE) FIRE DETECTION SYSTEM FOR GT NOISE ENLOSURE MPB",5121,"HK1003-Rev.0E-3",TT_FinMile,"55902",-,-,-,0,TK_NotStart,30/05/2023,,30/05/2023,,"SI20SGJ6A15 FS,SI20BZK7L25 FS,SI20BZK7F26 FS,SI20MBA8-23& FS","SI20SGJ6A15,SI20BZK7L25,SI20BZK7F26,SI20MBA8-23&","SI20CYQ8-25 FS","SI20CYQ8-25",147,,147,,34,,34,,97,192,"HK1003 -Blackpoint D2 - Rev.0E DD30092021"
1-1292,SI20BZK7-25,"PRECONDITION FOR CABLING ACTIVITIES AVAILABLE (95% cable pulling cards released, cards, cables + manuals on site)",5121,"HK1003-Rev.0E-3",TT_Mile,"55902",-,-,-,0,TK_NotStart,21/07/2022,,21/07/2022,,"SI--B--2-68 SS,SI--BZK2-06 FS,SI--BZK2-05 FS,SI20BZK4-40 SS,SI--BZK2-81 SS,SI--B--7-55 FS,SI--UBA2G85 FS,SI--B--2-93 FS","SI--B--2-68,SI--BZK2-06,SI--BZK2-05,SI20BZK4-40,SI--BZK2-81,SI--B--7-55,SI--UBA2G85,SI--B--2-93","SI20CFE7A25 FS,SI20BZK7B32 FS,SI20BZK7-28 FS,SI20BZK7C33 FS,SI20BZK7L25 FS,SI20BZK7F26 FS,SI20BZK7A25 FS,SI20BZK7C25 FS,SI20BZK7A27 FS,SI20BZK7A26 FS,SI20BZK7E25 FS,SI20BZK7D25 FS,SI20BZK7B27 FS,SI20BZK7F25 FS,SI20BZK7B24 FS,SI20UBA7-25 FS,SI20UBA7-104 FS,SI20BZK7B26 FS,SI--BRU8-22 FS,SI20CR-8-10 FS,SI20UBA8-12 FS,SI--2226-55 FS,SI--2222-35 FS,SI20BZK7D10# FF,SI20BZK7D10# FS,SI20CPB8-25 FS,SI20MKA8-10 FS,SI20UMC5D50 FS,SI20BZK7B27 SS,SI20BZK7A28 FS,SI20BZK7E26 FS,SI20BZK7A26 SS,SI20UBA7C-32 FS,SI20UBA7-105 FS,SI20UBA7-25 SS,SI20UBA7L16 FS,SI20UBA7-36 FS,SI20UBA7-33 FS,SI20UBA7-30 FS,SI20BZK7E25 SS,SI20BZK7L25 SS,SI20BZK7F27 FS,SI20BZK7F28 FS,SI20BZK7A34 FS,SI20BZK7A25 SS,SI20BZK7D25 SS,SI20BZK7B24 SS,SI20BZK7B32 SS,SI20CFE7A25 SS,SI20BZK7F25 SS,SI20BZK7-28 SS,SI20BZK7C25 SS,SI20BZK7C33 SS,SI20BZK7F26 SS,SI20BZK7A27 SS","SI20CFE7A25,SI20BZK7B32,SI20BZK7-28,SI20BZK7C33,SI20BZK7L25,SI20BZK7F26,SI20BZK7A25,SI20BZK7C25,SI20BZK7A27,SI20BZK7A26,SI20BZK7E25,SI20BZK7D25,SI20BZK7B27,SI20BZK7F25,SI20BZK7B24,SI20UBA7-25,SI20UBA7-104,SI20BZK7B26,SI--BRU8-22,SI20CR-8-10,SI20UBA8-12,SI--2226-55,SI--2222-35,SI20BZK7D10#,SI20BZK7D10#,SI20CPB8-25,SI20MKA8-10,SI20UMC5D50,SI20BZK7B27,SI20BZK7A28,SI20BZK7E26,SI20BZK7A26,SI20UBA7C-32,SI20UBA7-105,SI20UBA7-25,SI20UBA7L16,SI20UBA7-36,SI20UBA7-33,SI20UBA7-30,SI20BZK7E25,SI20BZK7L25,SI20BZK7F27,SI20BZK7F28,SI20BZK7A34,SI20BZK7A25,SI20BZK7D25,SI20BZK7B24,SI20BZK7B32,SI20CFE7A25,SI20BZK7F25,SI20BZK7-28,SI20BZK7C25,SI20BZK7C33,SI20BZK7F26,SI20BZK7A27",102,,102,,23,,23,,74,464,"HK1003 -Blackpoint D2 - Rev.0E DD30092021"
1-1293,SI--LBH2D15,"BASIC DESIGN / QUOTATION STAGE / ORDERING BLOW DOWN TANK LBH",5121,"HK1003-Rev.0E-3",TT_Task,"55902",-,-,-,100,TK_Complete,18/11/2020,18/11/2020,26/01/2021,26/01/2021,"SI--HA-2-10 FF","SI--HA-2-10","SI--LBH2D60 FS,SI--LBH2D65 FS,SI20LBH3D25 FS,SI--HA-2-85 FS","SI--LBH2D60,SI--LBH2D65,SI20LBH3D25,SI--HA-2-85",15,15,25,25,3,3,5,5,0,,"HK1003 -Blackpoint D2 - Rev.0E DD30092021"
1-1294,SP--MB-2-40,"LIST OF MEASURING DEVICES GT&GT-AUX. (MPL) (PROJECT SPECIFIC KKS-MASTER ACC. TO STANDARD VARIATION)",5121,"HK1003-Rev.0E-3",TT_FinMile,"55902",-,-,-,100,TK_Complete,01/04/2021,01/04/2021,01/04/2021,01/04/2021,"SP--CJP2-17 FS,SP--MB-2-85 FS","SP--CJP2-17,SP--MB-2-85","SP--MB-2E40 FS","SP--MB-2E40",34,34,34,34,8,8,8,8,7,,"HK1003 -Blackpoint D2 - Rev.0E DD30092021"
1-1295,SP--CJP2-17,"FUNCTIONAL SPECIFICATION FOR I&C GT (FSD)",5121,"HK1003-Rev.0E-3",TT_FinMile,"55902",-,-,-,100,TK_Complete,20/03/2021,20/03/2021,20/03/2021,20/03/2021,"SP--MB-2-86 FS,SP--MB-2-10 FS","SP--MB-2-86,SP--MB-2-10","SP--MB-2-40 FS","SP--MB-2-40",33,33,33,33,7,7,7,7,6,,"HK1003 -Blackpoint D2 - Rev.0E DD30092021"
1-1296,SP--MB-2A10,"SYSTEM REQUIREMENTS FOR FOR GT AUX. SYSTEMS",5121,"HK1003-Rev.0E-3",TT_FinMile,"55902",-,-,-,100,TK_Complete,05/03/2021,05/03/2021,05/03/2021,05/03/2021,"SI-----1-04 FS,SP--MB-2-10 FS","SI-----1-04,SP--MB-2-10","SP20MB-2-80 FS,SP--MB-2A55 FS","SP20MB-2-80,SP--MB-2A55",30,30,30,30,7,7,7,7,5,,"HK1003 -Blackpoint D2 - Rev.0E DD30092021"
1-1297,SI20MA-6-03,"CHECK AND PREPARATION OF FOUNDATION STEAM TURBINE MA",5121,"HK1003-Rev.0E-3",TT_Task,"55902",-,-,-,0,TK_NotStart,17/06/2022,,23/06/2022,,"SI20UMC6M15 FS,SI--LOG2-50 FS,SI--PEM6-20& FS,SI--PM-2-90 FS,SI--2222-32 SS,SI--3335-65 SS,SI20UMC5A45 FS,SI20MA-6-00 FS,SI--2226-66 FS,SI20UMC5E66 FS","SI20UMC6M15,SI--LOG2-50,SI--PEM6-20&,SI--PM-2-90,SI--2222-32,SI--3335-65,SI20UMC5A45,SI20MA-6-00,SI--2226-66,SI20UMC5E66","SI20MA-6A17# SS","SI20MA-6A17#",97,,98,,22,,23,,70,24,"HK1003 -Blackpoint D2 - Rev.0E DD30092021"
1-1298,SI20UBX2-75,"(F) DETAIL DESIGN STEEL STRUCTURE WITH CONTRACTOR 20UBX/20UBG",5121,"HK1003-Rev.0E-3",TT_Mile,"55902",-,-,-,0,TK_NotStart,17/04/2022,,17/04/2022,,"SI20UBX2-60 FS,SI20UBX2-55 FS,SI20UBX2-70 FS","SI20UBX2-60,SI20UBX2-55,SI20UBX2-70","SI20UBX2C-55 FS,SI20UBX3B26 FS","SI20UBX2C-55,SI20UBX3B26",89,,89,,20,,20,,58,640,"HK1003 -Blackpoint D2 - Rev.0E DD30092021"
1-1299,SI20UBX2-55,"DETAIL DESIGN STEEL STRUCTURE 20UBX",5121,"HK1003-Rev.0E-3",TT_Task,"55902",-,-,-,0,TK_NotStart,07/10/2021,,05/12/2021,,"SI20UBX2-50 FS,SI20UBX2-83 FS","SI20UBX2-50,SI20UBX2-83","SI--BZP2-30 SS,SI20UBX2C-50 FF,SI20UBX2-75 FS,SI--UBA2-89 FS,SI20UBX2-60 FF","SI--BZP2-30,SI20UBX2C-50,SI20UBX2-75,SI--UBA2-89,SI20UBX2-60",61,,70,,14,,16,,32,792,"HK1003 -Blackpoint D2 - Rev.0E DD30092021"
1-1300,SI20MA-6-00,"SET UP EQUIPMENT ON SITE, SET UP SITE STORES STEAM TURBINE MA",5121,"HK1003-Rev.0E-3",TT_Task,"55902",-,-,-,0,TK_NotStart,10/06/2022,,16/06/2022,,"SI20UMC5A45 FS,SI20M--6-04 FS,SI20UMC5C56 SS","SI20UMC5A45,SI20M--6-04,SI20UMC5C56","SI20MKA6-55 FS,SI20MA-6-03 FS","SI20MKA6-55,SI20MA-6-03",96,,97,,22,,22,,69,24,"HK1003 -Blackpoint D2 - Rev.0E DD30092021"
1-1301,SI20MA-5-25,"GROUTING OF REAR LP1-BEARING PEDESTAL MA",5121,"HK1003-Rev.0E-3",TT_Task,"55902",-,-,-,0,TK_NotStart,15/07/2022,,22/07/2022,,"SI20MA-6-35 FS","SI20MA-6-35","SI20MA-6-65 FS,SI20MAN6-15 FS,SI20MA-6-50 FS,SI20MA-6B40 FS,SI20MA-6A17# FF,SI20MA-6B83 FS","SI20MA-6-65,SI20MAN6-15,SI20MA-6-50,SI20MA-6B40,SI20MA-6A17#,SI20MA-6B83",101,,102,,23,,24,,73,184,"HK1003 -Blackpoint D2 - Rev.0E DD30092021"
1-1302,SI20BZK7A25,"CABLING GENERATOR INTERNAL / GEN. AUXILIARIES",5121,"HK1003-Rev.0E-3",TT_Task,"55902",-,-,-,0,TK_NotStart,01/10/2022,,21/10/2022,,"SI20BZK7-25 FS,SI20BZK4-41 FS,SI--B--7-55 FS,SI--B--2-68 FS,SI20UBA7-25 FF,SI20UBA7-15 FS,SI20BZP7-183 FS,SI20BZK7-25 SS,SI--B--2-93 FS,SI20MKC7-16 FS","SI20BZK7-25,SI20BZK4-41,SI--B--7-55,SI--B--2-68,SI20UBA7-25,SI20UBA7-15,SI20BZP7-183,SI20BZK7-25,SI--B--2-93,SI20MKC7-16","SI20MKQ8-25 FS,SI20MKF8-11 FS,SI20MKW8-10 FS,SI20MKG8-26 FS,SI20BFA8-10 FS,SI20BZK7D10# FF,SI20BZK7D10# SS,SI20MKQ8-25 SS,SI20CPA8-10 FS","SI20MKQ8-25,SI20MKF8-11,SI20MKW8-10,SI20MKG8-26,SI20BFA8-10,SI20BZK7D10#,SI20BZK7D10#,SI20MKQ8-25,SI20CPA8-10",113,,115,,26,,27,,82,880,"HK1003 -Blackpoint D2 - Rev.0E DD30092021"
1-1303,SI20UBA3H25,"MANUFACTURING ELECTRICAL MODULES 20UBA7310/30",5121,"HK1003-Rev.0E-3",TT_Task,"55902",-,-,-,65,TK_Active,01/07/2021,01/07/2021,17/11/2021,,"SI--UBA2G85 FS,SI--UBA2G85 SS,SI--2222-30 FS","SI--UBA2G85,SI--UBA2G85,SI--2222-30","SI20UBA4-51 FS,SI20UBA3H20# SS,SI20UBA3H20# FS","SI20UBA4-51,SI20UBA3H20#,SI20UBA3H20#",47,47,67,,11,11,15,,19,592,"HK1003 -Blackpoint D2 - Rev.0E DD30092021"
1-1304,SI--BZK2-13,"PREPARATION OF 1ST LENGTH MATRIX",5121,"HK1003-Rev.0E-3",TT_Task,"55902",-,-,-,100,TK_Complete,02/05/2021,02/05/2021,15/05/2021,15/05/2021,"SI--B--2-44 FS,SI--B--2-14 FS","SI--B--2-44,SI--B--2-14","SI--BZK2-19 FS","SI--BZK2-19",39,39,41,41,9,9,9,9,10,,"HK1003 -Blackpoint D2 - Rev.0E DD30092021"
1-1305,SI--BZK2-19,"1ST. LENGTH MATRIX AVAILABLE",5121,"HK1003-Rev.0E-3",TT_Mile,"55902",-,-,-,100,TK_Complete,16/05/2021,16/05/2021,16/05/2021,16/05/2021,"SI--B--2-14 SS,SI--BZK2-13 FS","SI--B--2-14,SI--BZK2-13","SI--B--2A55 FS,SI--BZK2-82 FS","SI--B--2A55,SI--BZK2-82",41,41,41,41,9,9,9,9,13,,"HK1003 -Blackpoint D2 - Rev.0E DD30092021"
1-1306,SI20BZK7-130,"ELECTRICAL ERECTION STACK HRSG20_3rd part INCL. CABLES / HEATED PROBE FOR EMISSION MONITORING",5121,"HK1003-Rev.0E-3",TT_Task,"55902",-,-,-,0,TK_NotStart,20/08/2022,,29/08/2022,,"SI--PEE7-20 FS,SI--2227-68 FS,SI--BZP4B40 FS,SI--BZP2-05 FS,SI20BZP7-125 SS,SI20HB-6-43 FS,SI20BZP7-26 FS,SI--PEE7-20 SS,SI20HB-6-45 SS,SI20BZP7-135 FS,SI20HB-6-49 FS,SI20HB-6-49 FF","SI--PEE7-20,SI--2227-68,SI--BZP4B40,SI--BZP2-05,SI20BZP7-125,SI20HB-6-43,SI20BZP7-26,SI--PEE7-20,SI20HB-6-45,SI20BZP7-135,SI20HB-6-49,SI20HB-6-49","SI20CFE7A25 FS,SI20BZP7B10# FF,SI20BZP7B10# SS,SI20HB-6-46 FS","SI20CFE7A25,SI20BZP7B10#,SI20BZP7B10#,SI20HB-6-46",107,,108,,24,,25,,78,1768,"HK1003 -Blackpoint D2 - Rev.0E DD30092021"
1-1307,SI20BZK7C25,"CABLING (LATS) GENERATOR 20",5121,"HK1003-Rev.0E-3",TT_Task,"55902",-,-,-,0,TK_NotStart,26/02/2023,,11/03/2023,,"SI20BZK7-25 FS,SI20BZK4-41 FS,SI--B--7-55 FS,SI20BZP7-140 FS,SI20MKA7-42 FS,SI20BZP7-100 FS,SI--B--2-68 FS,SI20MKA7-89 FS,SI20BZK7-25 SS,SI--B--2-93 FS,SI20BZK7L25 FS,SI--BZK4-40 FS","SI20BZK7-25,SI20BZK4-41,SI--B--7-55,SI20BZP7-140,SI20MKA7-42,SI20BZP7-100,SI--B--2-68,SI20MKA7-89,SI20BZK7-25,SI--B--2-93,SI20BZK7L25,SI--BZK4-40","SI20MKW8-10 FS,SI20MKQ8-25 FS,SI20MKG8-26 FS,SI20MKF8-11 FS,SI20BZK7D10# FF,SI20BZK7D10# SS","SI20MKW8-10,SI20MKQ8-25,SI20MKG8-26,SI20MKF8-11,SI20BZK7D10#,SI20BZK7D10#",134,,136,,31,,31,,91,496,"HK1003 -Blackpoint D2 - Rev.0E DD30092021"
1-1308,SI20BZK7-28,"CABLING (LATS) ST 20",5121,"HK1003-Rev.0E-3",TT_Task,"55902",-,-,-,0,TK_NotStart,16/11/2022,,27/12/2022,,"SI20BZK7-25 FS,SI20BZK4-41 FS,SI--B--7-55 FS,SI20C--7B17 FS,SI20C--7L15 SS,SI20BZP7-110 FS,SI20UBA4-42 FS,SI20BZK7C33 FF,SI--B--2-68 FS,SI20BZK7-25 SS,SI--B--2-93 FS,SI--BZK4-40 FS","SI20BZK7-25,SI20BZK4-41,SI--B--7-55,SI20C--7B17,SI20C--7L15,SI20BZP7-110,SI20UBA4-42,SI20BZK7C33,SI--B--2-68,SI20BZK7-25,SI--B--2-93,SI--BZK4-40","SI20CPB8-10 FS,SI20MA-8-10 FS,SI20MAV8-10 FS,SI20MAX8-10 FS,SI20MAJ8-10 FS,SI20MAW8-10 FS,SI20MAD8-10 FS,SI20MAL8-10 FS,SI20MAN8-10 FS,SI20UMC5D50 FS,SI--2226-55 FS,SI--2222-35 FS,SI20MA-8B25 FS,SI20BZK7D10# FF,SI20BZK7D10# SS","SI20CPB8-10,SI20MA-8-10,SI20MAV8-10,SI20MAX8-10,SI20MAJ8-10,SI20MAW8-10,SI20MAD8-10,SI20MAL8-10,SI20MAN8-10,SI20UMC5D50,SI--2226-55,SI--2222-35,SI20MA-8B25,SI20BZK7D10#,SI20BZK7D10#",119,,125,,27,,29,,85,304,"HK1003 -Blackpoint D2 - Rev.0E DD30092021"
1-1309,SI20PAB6A16,"ERECTION, NDT, PT / VALVES (MECHANICAL) 20PAB URD",5121,"HK1003-Rev.0E-3",TT_Task,"55902",-,-,-,0,TK_NotStart,24/07/2022,,03/09/2022,,"SI20PAC6B40 FS,SI20URD5-45 FS,SI20PAB5-105 FS,SI---1P6A05 FS","SI20PAC6B40,SI20URD5-45,SI20PAB5-105,SI---1P6A05","SI20PA-6H70 FS,SI20PAB7A15 FF,SI20PAB8-05 FS,SI20-6-16# FF,SI20-6-16# SS","SI20PA-6H70,SI20PAB7A15,SI20PAB8-05,SI20-6-16#,SI20-6-16#",103,,109,,24,,25,,75,1784,"HK1003 -Blackpoint D2 - Rev.0E DD30092021"
1-1310,SI20LAB6H45,"INSULATION PIPES / VALVES FEEDWATER SYSTEM 20LAB",5121,"HK1003-Rev.0E-3",TT_Task,"55902",-,-,-,0,TK_NotStart,17/11/2022,,28/12/2022,,"SI20LAB6H15 FS,SI-P2I-15 FS","SI20LAB6H15,SI-P2I-15","SI20LCA8M10 FS,SI20LD8B110 FS,SI20--P6-75 FS,SI20LAC8B10 FS,SI20---6A15# FF","SI20LCA8M10,SI20LD8B110,SI20--P6-75,SI20LAC8B10,SI20---6A15#",119,,125,,27,,29,,85,688,"HK1003 -Blackpoint D2 - Rev.0E DD30092021"
1-1311,SI20UMC5C45,"(RFE) ROOF CLOSED (MAIN BUILDLING) 20UMC (single layer)",5121,"HK1003-Rev.0E-3",TT_Mile,"55902",-,-,-,0,TK_NotStart,25/04/2022,,25/04/2022,,"SI20UMC5C56 SS","SI20UMC5C56","SI20LDK6B16 FS,SI20PCB6H15 FS,SI20MKA6-55 FS,SI20MA-6B00 FS,SI20MAX6-15 FS,SI20LBG6C15 FS,SI20PAH6-15 FS,SI20PGB6H17 FS,SI20LCB6B10 FS,SI20LCB6B15 FS,SI20MAW6-16 FS,SI20USX5-10 FS,SI20MAJ6-15 FS","SI20LDK6B16,SI20PCB6H15,SI20MKA6-55,SI20MA-6B00,SI20MAX6-15,SI20LBG6C15,SI20PAH6-15,SI20PGB6H17,SI20LCB6B10,SI20LCB6B15,SI20MAW6-16,SI20USX5-10,SI20MAJ6-15",90,,90,,21,,21,,59,616,"HK1003 -Blackpoint D2 - Rev.0E DD30092021"
1-1312,SI20UBA8G27,"ELECTRICAL COMMISSIONING 20UBA7xxx",5121,"HK1003-Rev.0E-3",TT_Task,"55902",-,-,-,0,TK_NotStart,14/02/2023,,27/02/2023,,"SI20UBA8-12 FS,SI20BFA8-25 SS,SI--2222-35 FS","SI20UBA8-12,SI20BFA8-25,SI--2222-35","SI20CPA8-25 SS,SI20SGC8-25 SS","SI20CPA8-25,SI20SGC8-25",132,,134,,30,,31,,90,368,"HK1003 -Blackpoint D2 - Rev.0E DD30092021"
1-1313,SI20MAX4-40,"(OTD-OS) ON SITE ST HYDRAULIC SYSTEM 20MAX",5121,"HK1003-Rev.0E-3",TT_FinMile,"55902",-,-,-,0,TK_NotStart,26/08/2022,,26/08/2022,,"SI20MAX4-25 FS","SI20MAX4-25","SI20MAX6-15 FS","SI20MAX6-15",107,,107,,25,,25,,79,1144,"HK1003 -Blackpoint D2 - Rev.0E DD30092021"
1-1314,SI20MAW4-40,"(OTD-OS) ON SITE GLAND STEAM CONDENSER 20MAW",5121,"HK1003-Rev.0E-3",TT_FinMile,"55902",-,-,-,0,TK_NotStart,24/06/2022,,24/06/2022,,"SI20MAW4-25 FS","SI20MAW4-25","SI20MAW6-16 FS","SI20MAW6-16",98,,98,,23,,23,,70,664,"HK1003 -Blackpoint D2 - Rev.0E DD30092021"
1-1315,SI20MAW8-25,"COLD COMMISSIONING ST GLAND/ LEAKAGE STEAM SYSTEM BEFORE TURNING GEAR MAW",5121,"HK1003-Rev.0E-3",TT_Task,"55902",-,-,-,0,TK_NotStart,02/06/2023,,19/06/2023,,"SI20BFG8-50 FS,SI20MA-8-25 FF,SI20MAW8-10 FS,SI20CPB8-25 FS,SI20MA-6-66 FS,SI-PM-40 FS,SI20B--8-50 FS","SI20BFG8-50,SI20MA-8-25,SI20MAW8-10,SI20CPB8-25,SI20MA-6-66,SI-PM-40,SI20B--8-50","SI20HA-9A45 FS,SI20MA-8-25# FS,SI20MA-9-05 FS,SI20MAJ8-25 SS","SI20HA-9A45,SI20MA-8-25#,SI20MA-9-05,SI20MAJ8-25",147,,150,,34,,35,,97,32,"HK1003 -Blackpoint D2 - Rev.0E DD30092021"
1-1316,SI20MAJ8-25,"COLD COMMISSIONING ST EVACUATION SYSTEM BEFORE TURNING GEAR MAJ",5121,"HK1003-Rev.0E-3",TT_Task,"55902",-,-,-,0,TK_NotStart,14/06/2023,,18/06/2023,,"SI20MAJ8-10 FS,SI20BFG8-50 FS,SI20CPB8-25 FS,SI20MA-6-66 FS,SI-PM-40 FS,SI20B--8-50 FS,SI20MAD8-25 FS,SI20MAW8-25 SS","SI20MAJ8-10,SI20BFG8-50,SI20CPB8-25,SI20MA-6-66,SI-PM-40,SI20B--8-50,SI20MAD8-25,SI20MAW8-25","SI20MA-9-05 FS,SI20MA-8-25# FS","SI20MA-9-05,SI20MA-8-25#",149,,150,,34,,35,,98,40,"HK1003 -Blackpoint D2 - Rev.0E DD30092021"
1-1317,SI20MA-8B25,"COLD COMMISSIONING HP- / LP- VALVES -MAA/B",5121,"HK1003-Rev.0E-3",TT_Task,"55902",-,-,-,0,TK_NotStart,10/07/2023,,14/07/2023,,"SI20L--9I80 SS,SI20HA-9A45 FS,SI20CPB8-25 FS,SI20MA-8-10 FS,SI20MA-6D70 FS,SI20MA-6D45 FS,SI20C--7L15 FS,SI20MAA6A15 FS,SI20MAX6A65 SS,SI20BZK7-28 FS,SI20BZK7E25 FS,SI20BZK7C33 FS,SI20MAV6H15 FS,SI20MAD8-26& FS,SI-PM-40 FS","SI20L--9I80,SI20HA-9A45,SI20CPB8-25,SI20MA-8-10,SI20MA-6D70,SI20MA-6D45,SI20C--7L15,SI20MAA6A15,SI20MAX6A65,SI20BZK7-28,SI20BZK7E25,SI20BZK7C33,SI20MAV6H15,SI20MAD8-26&,SI-PM-40","SI20M--9-50 FS","SI20M--9-50",153,,153,,35,,35,,99,80,"HK1003 -Blackpoint D2 - Rev.0E DD30092021"
1-1318,SP--MB-2-07,"3D-MODEL OF GAS TURBINE (ELECTRONIC FORMAT)",5121,"HK1003-Rev.0E-3",TT_FinMile,"55902",-,-,-,100,TK_Complete,26/02/2021,26/02/2021,26/02/2021,26/02/2021,"SP--MB-2-86 FS","SP--MB-2-86","SI---3P2A10 FS,SI---1P2A10 FS,SI---2P2A10 FS,SI---4P2A10 FS","SI---3P2A10,SI---1P2A10,SI---2P2A10,SI---4P2A10",29,29,29,29,6,6,6,6,5,,"HK1003 -Blackpoint D2 - Rev.0E DD30092021"
1-1319,SI20UBX2-50,"(MS3) STEEL STRUCTURE FINAL DIMENSIONS, LOADS AVAILABLE 20UBX",5121,"HK1003-Rev.0E-3",TT_FinMile,"55902",-,-,-,100,TK_Complete,26/08/2021,26/08/2021,26/08/2021,26/08/2021,"SI--BAC2-60 SS,SI--BAA2-60 SS","SI--BAC2-60,SI--BAA2-60","SI20UBX2-55 FS","SI20UBX2-55",55,55,55,55,13,13,13,13,27,,"HK1003 -Blackpoint D2 - Rev.0E DD30092021"
1-1320,SI--UBX2A75,"(F) CONCRETE STRUCTURE DWGS ON SITE RELEASED FOR EXECUTION 20UBX/20UBG03",5121,"HK1003-Rev.0E-3",TT_FinMile,"55902",-,-,-,0,TK_NotStart,15/04/2022,,15/04/2022,,"SI--UBX2-50 FS,SI20UBX2-20 FS,SI20UBX2-35 FS,SI20UBX2-30 FS","SI--UBX2-50,SI20UBX2-20,SI20UBX2-35,SI20UBX2-30","SI20UBY5-06 FS,SI20UBX5-05 FS","SI20UBY5-06,SI20UBX5-05",88,,88,,20,,20,,57,536,"HK1003 -Blackpoint D2 - Rev.0E DD30092021"
1-1321,SI20UBD5-15,"CONSTRUCTION FOUNDATION 20UBD01/02",5121,"HK1003-Rev.0E-3",TT_Task,"55902",-,-,-,0,TK_NotStart,14/05/2022,,27/05/2022,,"SI20UBD5-10 SS","SI20UBD5-10","SI20UBD5-65 FS","SI20UBD5-65",93,,94,,21,,22,,64,1064,"HK1003 -Blackpoint D2 - Rev.0E DD30092021"
1-1322,SI20UBD5-10,"(H) START PLACING FORMWORK 20UBD01/02",5121,"HK1003-Rev.0E-3",TT_Mile,"55902",-,-,-,0,TK_NotStart,14/05/2022,,14/05/2022,,"SI20UBD5-05 FS,SI20UBF5-15 FS,SI-----5-21& FS,SI20UBD2-86 FS","SI20UBD5-05,SI20UBF5-15,SI-----5-21&,SI20UBD2-86","SI20UBD5-15 SS,SI20UBD5-15.00 FS","SI20UBD5-15,SI20UBD5-15.00",93,,93,,21,,21,,64,1064,"HK1003 -Blackpoint D2 - Rev.0E DD30092021"
1-1323,SI20UBD5-05,"WORK PREPARATION, EXCAVATION 20UBD01/02",5121,"HK1003-Rev.0E-3",TT_Task,"55902",-,-,-,0,TK_NotStart,30/04/2022,,13/05/2022,,"SI--UBF2B75 FS,SI20UBD2-75 FS,SI20UBA5-17 FS,SI-----5-22 FS,SI--UBF2A76 FS,SI-----5-21& FS,SI-----5-20 FS,SI-P222-84 FS,SI20UBD2-85 FS","SI--UBF2B75,SI20UBD2-75,SI20UBA5-17,SI-----5-22,SI--UBF2A76,SI-----5-21&,SI-----5-20,SI-P222-84,SI20UBD2-85","SI20UBD5-10 FS,SI20ULY5-45 SS,SI-P222-131# FF,SI-P222-131# SS","SI20UBD5-10,SI20ULY5-45,SI-P222-131#,SI-P222-131#",91,,92,,21,,21,,60,1064,"HK1003 -Blackpoint D2 - Rev.0E DD30092021"
1-1324,SI20MKA6-09,"CHECK AND PREPARATION OF FOUNDATION MKA",5121,"HK1003-Rev.0E-3",TT_Task,"55902",-,-,-,0,TK_NotStart,10/07/2022,,23/07/2022,,"SI20MKA6-55 FS,SI20MA-5-26 SS","SI20MKA6-55,SI20MA-5-26","SI20MKA5-25 FF,SI20MKA6F00 FS,SI20MKA6-30 FS","SI20MKA5-25,SI20MKA6F00,SI20MKA6-30",101,,103,,23,,24,,73,368,"HK1003 -Blackpoint D2 - Rev.0E DD30092021"
1-1325,SI20MKA6-55,"SET UP EQUIPMENT ON SITE, SET UP SITE STORES GENERATOR MKA",5121,"HK1003-Rev.0E-3",TT_Task,"55902",-,-,-,0,TK_NotStart,28/06/2022,,04/07/2022,,"SI20UMC5C45 FS,SI20UMC5A45 FS,SI20MA-6-00 FS,SI20M--6-04 FS,SI20UMC5C55 FS","SI20UMC5C45,SI20UMC5A45,SI20MA-6-00,SI20M--6-04,SI20UMC5C55","SI20MKA6-09 FS,SI20MKA6E16 FS","SI20MKA6-09,SI20MKA6E16",99,,100,,23,,23,,71,408,"HK1003 -Blackpoint D2 - Rev.0E DD30092021"
1-1326,SI20SGY7-17,"ERECTION FIRE DETECTION SYSTEM IN 01UEN SGY",5121,"HK1003-Rev.0E-3",TT_Task,"55902",-,-,-,0,TK_NotStart,26/09/2022,,30/10/2022,,"SI20SGY4A40 FS,SI--SGY2-05 FS,SI20EK-6-19 FS,SI20UEN5-23 FS,SI20SGY4A40 FF,SI-P222-65 FS","SI20SGY4A40,SI--SGY2-05,SI20EK-6-19,SI20UEN5-23,SI20SGY4A40,SI-P222-65","SI20EK-8-10 FS","SI20EK-8-10",112,,117,,26,,27,,82,1592,"HK1003 -Blackpoint D2 - Rev.0E DD30092021"
1-1327,SI20UHA5-45,"(RFE) FOUNDATION 20UHA",5121,"HK1003-Rev.0E-3",TT_FinMile,"55902",-,-,-,0,TK_NotStart,14/12/2021,,14/12/2021,,"SI20UHA5-15 FS,SI20UHA5-15.12 FS","SI20UHA5-15,SI20UHA5-15.12","SI20HB-6A17 FS,SI20UBA5-45 FF,SI20UVM5-05 FS,SI20LCL6B15 FS,SI20LCL6B41 FS,SI20LBH6D16 FS,SI20UHA5-15# FF,SI20UMY5-45 FF,SI20UEY5-100 FF,SI20UMX5-05 FF,SI20UMY5-05 FF,SI20HB-6A18 FS","SI20HB-6A17,SI20UBA5-45,SI20UVM5-05,SI20LCL6B15,SI20LCL6B41,SI20LBH6D16,SI20UHA5-15#,SI20UMY5-45,SI20UEY5-100,SI20UMX5-05,SI20UMY5-05,SI20HB-6A18",71,,71,,16,,16,,42,56,"HK1003 -Blackpoint D2 - Rev.0E DD30092021"
1-1328,SI20PAH8-25,"(TOP-20PAH) CONDENSER TUBE CLEANING SYSTEM",5121,"HK1003-Rev.0E-3",TT_FinMile,"55902",-,-,-,0,TK_NotStart,11/05/2023,,11/05/2023,,"SI20PAB7A15 FS,SI20PA-6H70 FS,SI20PGB6H17 FS,SI20PCB6H15 FS,SI20PGB7H15 FS,SI20PCB7H15 FS,SI20PAB6A15 FS,SI20PGB6H15 FS,SI--9998-21& SS,SI20PAH6H15 FS,SI20PAH7-25 FS,SI20PAH7H15 FS,SI20BZK7E25 FS,SI20PAH6-15 FS,SI--9998-23& FS","SI20PAB7A15,SI20PA-6H70,SI20PGB6H17,SI20PCB6H15,SI20PGB7H15,SI20PCB7H15,SI20PAB6A15,SI20PGB6H15,SI--9998-21&,SI20PAH6H15,SI20PAH7-25,SI20PAH7H15,SI20BZK7E25,SI20PAH6-15,SI--9998-23&","SI20PCB8M25 FS","SI20PCB8M25",144,,144,,33,,33,,97,64,"HK1003 -Blackpoint D2 - Rev.0E DD30092021"
1-1329,SI20L--9I80,"REMOVAL INSERTS OF EMERGENCY STOP VALVES",5121,"HK1003-Rev.0E-3",TT_Task,"55902",-,-,-,0,TK_NotStart,10/07/2023,,14/07/2023,,"SI20HA-9A45 FS","SI20HA-9A45","SI20M--9-50 FS,SI20MA-8B25 SS,SI20L--9I81 SS","SI20M--9-50,SI20MA-8B25,SI20L--9I81",153,,153,,35,,35,,99,0,"HK1003 -Blackpoint D2 - Rev.0E DD30092021"
1-1330,SI--5552-60,"ROOM NUMBERS ASSIGNED TO EQUIPMENT",5121,"HK1003-Rev.0E-3",TT_Mile,"55902",-,-,-,100,TK_Complete,18/04/2021,18/04/2021,18/04/2021,18/04/2021,"SI-----1-05 FS","SI-----1-05","SI--C--2-05 SS,SI--5552-61 FS,SI--5552-64 FS","SI--C--2-05,SI--5552-61,SI--5552-64",37,37,37,37,8,8,8,8,9,,"HK1003 -Blackpoint D2 - Rev.0E DD30092021"
1-1331,SI20MAV8-25,"COLD COMMISSIONING LUBE AND LIFTING OIL SYSTEM INCL. GEN AND GT",5121,"HK1003-Rev.0E-3",TT_Task,"55902",-,-,-,0,TK_NotStart,30/05/2023,,19/06/2023,,"SI20PGB8B25 FS,SI20CPB8-25 FS,SI20BFG8-50 FS,SI20MAV8-10 FS,SI-PM-40 FS,SI20B--8-50 FS,SI20MA-8-25 SS,SI20SGC8-37 FS","SI20PGB8B25,SI20CPB8-25,SI20BFG8-50,SI20MAV8-10,SI-PM-40,SI20B--8-50,SI20MA-8-25,SI20SGC8-37","SI20M--8-67 FS","SI20M--8-67",147,,150,,34,,35,,97,32,"HK1003 -Blackpoint D2 - Rev.0E DD30092021"
1-1332,SI20MAV4-25,"TRANSPORT LUBE OIL MODULE 20MAV",5121,"HK1003-Rev.0E-3",TT_Task,"55902",-,-,-,0,TK_NotStart,08/05/2022,,02/07/2022,,"SP20MAV3-80 FS","SP20MAV3-80","SP20MAV4-40 FS,SI20MAV6-15 FS","SP20MAV4-40,SI20MAV6-15",92,,100,,21,,23,,63,552,"HK1003 -Blackpoint D2 - Rev.0E DD30092021"
1-1333,SI20UVM2-60,"(MS3) CONCRETE STRUCTURE FINAL DIMENSIONS, LOADS AVAILABLE 20UVM01",5121,"HK1003-Rev.0E-3",TT_FinMile,"55902",-,-,-,100,TK_Complete,20/05/2021,20/05/2021,20/05/2021,20/05/2021,"SI20HS-2-87 FS","SI20HS-2-87","SI20UVM2-70 FS,SI20UVM2-76 FS","SI20UVM2-70,SI20UVM2-76",41,41,41,41,9,9,9,9,13,,"HK1003 -Blackpoint D2 - Rev.0E DD30092021"
1-1334,SI20UVM2-50,"PREPARATION FOUNDATION GROUNDING DWGS  20UVM01",5121,"HK1003-Rev.0E-3",TT_Task,"55902",-,-,-,100,TK_Complete,19/07/2021,19/07/2021,01/08/2021,01/08/2021,"SI--BAW2-02 FS,SI20UVM2-70 FF","SI--BAW2-02,SI20UVM2-70","SI20UVM2-75 FS,SI20UVM2-77 FS","SI20UVM2-75,SI20UVM2-77",50,50,52,52,11,11,12,12,22,,"HK1003 -Blackpoint D2 - Rev.0E DD30092021"
1-1335,SI20UVM2-70,"DETAIL DESIGN, CHECKER CONCRETE STRUCTURE  20UVM01",5121,"HK1003-Rev.0E-3",TT_Task,"55902",-,-,-,100,TK_Complete,18/06/2021,18/06/2021,01/08/2021,01/08/2021,"SI20UVM2-60 FS,SI20UVM2-76 FS,SI--UHA2-70 FF","SI20UVM2-60,SI20UVM2-76,SI--UHA2-70","SI20UVM2-50 FF,SI20UVM2-75 FS,SI20UVM2-77 FS","SI20UVM2-50,SI20UVM2-75,SI20UVM2-77",45,45,52,52,10,10,12,12,18,,"HK1003 -Blackpoint D2 - Rev.0E DD30092021"
1-1336,SI--SG-2-80,"QUOTATION STAGE FIRE FIGHTING SYSTEMS SG-",5121,"HK1003-Rev.0E-3",TT_Task,"55902",-,-,-,100,TK_Complete,16/07/2021,16/07/2021,09/09/2021,09/09/2021,"SI--SG-2-43 FS,SI-----1-01 FS,SI--3332-76 FS,SI--SG-2-88 FF,SI--SG-2-42 FS","SI--SG-2-43,SI-----1-01,SI--3332-76,SI--SG-2-88,SI--SG-2-42","SI--SG-2-85 FS,SI-P222-171 SS","SI--SG-2-85,SI-P222-171",49,49,57,57,11,11,13,13,22,,"HK1003 -Blackpoint D2 - Rev.0E DD30092021"
1-1337,SP--MPB2-10,"SYSTEM DESCRIPTION GT ENCLOSURE MPB / SAM",5121,"HK1003-Rev.0E-3",TT_Mile,"55902",-,-,-,100,TK_Complete,07/05/2021,07/05/2021,07/05/2021,07/05/2021,"SP--MPB2-05 SS,SI-----1-04 SS","SP--MPB2-05,SI-----1-04","SI--M--2D20 SS","SI--M--2D20",39,39,39,39,9,9,9,9,11,,"HK1003 -Blackpoint D2 - Rev.0E DD30092021"
1-1338,SP--MPB2-05,"P&I DIAGRAM GT ENCLOSURE MPB / SAM",5121,"HK1003-Rev.0E-3",TT_Mile,"55902",-,-,-,100,TK_Complete,07/05/2021,07/05/2021,07/05/2021,07/05/2021,"SI-----1-04 SS,SP--MPB2E70 FS","SI-----1-04,SP--MPB2E70","SP--MPB2-10 SS,SI--M--2D20 SS,SP--MPB2E55 FS","SP--MPB2-10,SI--M--2D20,SP--MPB2E55",39,39,39,39,9,9,9,9,11,,"HK1003 -Blackpoint D2 - Rev.0E DD30092021"
1-1339,SI20EK-6-21,"(RFP) READY FOR PIPE CONNECTION GAS SYSTEM 01EK",5121,"HK1003-Rev.0E-3",TT_FinMile,"55902",-,-,-,0,TK_NotStart,07/08/2022,,07/08/2022,,"SI20EK-6-19 SS","SI20EK-6-19","SI20EKT6I15 FS,SI20EKG6H15 FS,SI20EKG6H16 FF,SI20EKG6H17 FF,SI20UEN615 FF","SI20EKT6I15,SI20EKG6H15,SI20EKG6H16,SI20EKG6H17,SI20UEN615",105,,105,,24,,24,,77,1440,"HK1003 -Blackpoint D2 - Rev.0E DD30092021"
1-1340,SI20EK-6-19,"MECHANICAL ERECTION FUEL GAS RECEIVING AND MIXING SYSTEM 01EK",5121,"HK1003-Rev.0E-3",TT_Task,"55902",-,-,-,0,TK_NotStart,25/07/2022,,25/09/2022,,"SI--EK-2-07 FS,SI20EK-4-41 FS,SI20UEN5-23 FS","SI--EK-2-07,SI20EK-4-41,SI20UEN5-23","SI20EK-8-10 FS,SI20SGY7-17 FS,SI20EK-6-21 SS,SI20EK-7-15 FF,SI20EKG6H16 FF,SI20BAW5D17 FS,SI20EKG6I15 FS,SI-P222-154 FS","SI20EK-8-10,SI20SGY7-17,SI20EK-6-21,SI20EK-7-15,SI20EKG6H16,SI20BAW5D17,SI20EKG6I15,SI-P222-154",103,,112,,24,,26,,75,600,"HK1003 -Blackpoint D2 - Rev.0E DD30092021"
1-1341,SI20URD5-10,"(H) START PLACING FORMWORK 20URD",5121,"HK1003-Rev.0E-3",TT_Mile,"55902",-,-,-,0,TK_NotStart,01/10/2021,,01/10/2021,,"SI--URD2-75 SS,SI20URA5-06 FS,SI--URD2-79 FS,SI20URA5-10 FS,SI-----5-21& FS","SI--URD2-75,SI20URA5-06,SI--URD2-79,SI20URA5-10,SI-----5-21&","SI20URD5-36 FS","SI20URD5-36",60,,60,,14,,14,,30,1352,"HK1003 -Blackpoint D2 - Rev.0E DD30092021"
1-1342,SI20URA5-45,"(RFE) READY FOR MECHANICAL ERECTION 20URA PART 1",5121,"HK1003-Rev.0E-3",TT_FinMile,"55902",-,-,-,0,TK_NotStart,24/08/2022,,24/08/2022,,"SI20URA5-53 FS","SI20URA5-53","SI20PAA6-15 FS,SI20URA3-23 FS,SI20BAW5C17 FF,SI20PAD6-31 FS,SI20PAD6-35 FS,SI20UZJ5-60 FS","SI20PAA6-15,SI20URA3-23,SI20BAW5C17,SI20PAD6-31,SI20PAD6-35,SI20UZJ5-60",107,,107,,25,,25,,78,72,"HK1003 -Blackpoint D2 - Rev.0E DD30092021"
1-1343,SI20URA5E45,"(RFE) READY FOR MECHANICAL ERECTION 20URA PART 2",5121,"HK1003-Rev.0E-3",TT_FinMile,"55902",-,-,-,0,TK_NotStart,17/09/2022,,17/09/2022,,"SI20URA5-51 FS","SI20URA5-51","SI20URA5-15# FF,SI20BAW5C17 FF,SI20PAD6-51 FS,SI20PUR8-25 FS","SI20URA5-15#,SI20BAW5C17,SI20PAD6-51,SI20PUR8-25",111,,111,,25,,25,,81,128,"HK1003 -Blackpoint D2 - Rev.0E DD30092021"
1-1344,SI20LAB7H15,"ELECTRICAL ERECTION PIPES / VALVES 20LAB",5121,"HK1003-Rev.0E-3",TT_Task,"55902",-,-,-,0,TK_NotStart,17/11/2022,,23/11/2022,,"SI20LAB6H15 FS,SI20BZP7D18 FS,SI20BZP7D19 FS,SI20BZP7-5 FS,SI20BZP7-196 FS,SI20BZP7-174 FS,SI20UMY6M10 FS,SI20UMY6M11 FS,SI20UMY6M12 FS,SI--2227-68 FS,SI--BZP2-05 FS,SI--PEE7-20 FS,SI--BZP4B40 FS","SI20LAB6H15,SI20BZP7D18,SI20BZP7D19,SI20BZP7-5,SI20BZP7-196,SI20BZP7-174,SI20UMY6M10,SI20UMY6M11,SI20UMY6M12,SI--2227-68,SI--BZP2-05,SI--PEE7-20,SI--BZP4B40","SI20LCA8M10 FS,SI20LD8B110 FS,SI20LAC8B10 FS,SI20BZK7D11# FF,SI20BZK7D11# SS","SI20LCA8M10,SI20LD8B110,SI20LAC8B10,SI20BZK7D11#,SI20BZK7D11#",119,,120,,27,,28,,85,968,"HK1003 -Blackpoint D2 - Rev.0E DD30092021"
1-1345,SI--UMC2B60,"(MS3) STEEL STRUCTURE FINAL DIMENSIONS, LOADS AVAILABLE 20UMC",5121,"HK1003-Rev.0E-3",TT_FinMile,"55902",-,-,-,100,TK_Complete,16/05/2021,16/05/2021,16/05/2021,16/05/2021,"SI--SMM2-86 FS","SI--SMM2-86","SI--UMC2B70 FF,SI--UMC2B82 FS","SI--UMC2B70,SI--UMC2B82",41,41,41,41,9,9,9,9,13,,"HK1003 -Blackpoint D2 - Rev.0E DD30092021"
1-1346,SI20BFF4-25,"TRANSPORT LV SWITCHGEAR FOR HRSG 20BFF/BMFF TO WORKSHOP OF ELECTRICAL MODULES MANUFACTURER xxx",5121,"HK1003-Rev.0E-3",TT_Task,"55902",-,-,-,0,TK_NotStart,14/05/2022,,15/05/2022,,"SI20BFF3-25 FS,SI20BFF3-80 FS","SI20BFF3-25,SI20BFF3-80","SI20CJF4-40 FS","SI20CJF4-40",93,,93,,21,,21,,64,880,"HK1003 -Blackpoint D2 - Rev.0E DD30092021"
1-1347,SP20MB-3A80,"(RFS) READY FOR SHIPMENT GT INTERCONNECTING PIPING 20MB- PORT OF EXPORT",5121,"HK1003-Rev.0E-3",TT_FinMile,"55902",-,-,-,0,TK_NotStart,10/06/2022,,10/06/2022,,"SI20MB-4-11 FS","SI20MB-4-11","SI20MB-4A25 FS","SI20MB-4A25",96,,96,,22,,22,,69,376,"HK1003 -Blackpoint D2 - Rev.0E DD30092021"
1-1348,SI--BZP2-14,"PREPARATION TENDER BOQ CABLE SUPPORT SYSTEM BZP",5121,"HK1003-Rev.0E-3",TT_Task,"55902",-,-,-,100,TK_Complete,14/07/2021,14/07/2021,10/08/2021,10/08/2021,"SI--3331-32 FS,SI-----1-01 FS,SI--B--2-03 FS,SI--BZP2-15 FF,SI--BZP2-15 FS","SI--3331-32,SI-----1-01,SI--B--2-03,SI--BZP2-15,SI--BZP2-15","SI--BZP2-00# SS,SI--BZP2-88 FS,SI--BZP2-93 FS","SI--BZP2-00#,SI--BZP2-88,SI--BZP2-93",49,49,53,53,11,11,12,12,21,,"HK1003 -Blackpoint D2 - Rev.0E DD30092021"
1-1349,SI20BZL7-15,"INSTALLATION STREET LIGHTING 20UZA",5121,"HK1003-Rev.0E-3",TT_Task,"55902",-,-,-,0,TK_NotStart,10/09/2022,,07/01/2023,,"SI20UZA5-22 FS","SI20UZA5-22","SI-----1-09 FS","SI-----1-09",110,,127,,25,,29,,80,2864,"HK1003 -Blackpoint D2 - Rev.0E DD30092021"
1-1350,SI20XKA7-15,"ERECTION EMERGENCY DIESEL GEN.SET XKA",5121,"HK1003-Rev.0E-3",TT_Task,"55902",-,-,-,0,TK_NotStart,20/08/2022,,23/09/2022,,"SI20XKA2-05 FS,SI20BAT4-10 FS,SI20XKA4-40 FS,SI20MB-6-10 FS,SI20UBN5-20 FS","SI20XKA2-05,SI20BAT4-10,SI20XKA4-40,SI20MB-6-10,SI20UBN5-20","SI20XKA8-10 FS,SI20BZK7B32 FS,SI20SGM6-21 FS,SI20SGY7A23 FS,SI20BZL7A17 FS,SI20UBN5B12 SS,SI20EGx6-65 SS,SI20BZK7F28 FS","SI20XKA8-10,SI20BZK7B32,SI20SGM6-21,SI20SGY7A23,SI20BZL7A17,SI20UBN5B12,SI20EGx6-65,SI20BZK7F28",107,,111,,24,,26,,78,504,"HK1003 -Blackpoint D2 - Rev.0E DD30092021"
1-1351,SI20XKA8-10,"(TOP-20XKA) EMERGENCY DIESEL GENERATOR SET XKA",5121,"HK1003-Rev.0E-3",TT_FinMile,"55902",-,-,-,0,TK_NotStart,26/05/2023,,26/05/2023,,"SI--9998-20& SS,SI20XKA7-15 FS,SI20BZK7B32 FS,SI20EGx6-65 FS,SI20SGC6J26 FS,SI20SGY7A25 FS,SI20UEX5B46 FS,SI20SG-4-41 FS,SI20BZK7F28 FS,SI20UBN5B46 FS","SI--9998-20&,SI20XKA7-15,SI20BZK7B32,SI20EGx6-65,SI20SGC6J26,SI20SGY7A25,SI20UEX5B46,SI20SG-4-41,SI20BZK7F28,SI20UBN5B46","SI20XKA8-25 FS","SI20XKA8-25",146,,146,,34,,34,,97,168,"HK1003 -Blackpoint D2 - Rev.0E DD30092021"
1-1352,SI20LCB6B15,"ERECTION CONDENSATE EXTRACTION PUMP 20LCB",5121,"HK1003-Rev.0E-3",TT_Task,"55902",-,-,-,0,TK_NotStart,30/07/2022,,26/08/2022,,"SI20LCB2B05 FS,SI20LCB6B10 FS,SI20UMC5C45 FS,SI20UMC5Y45 FS,SI20UMC5C55 FS,SI20UMC5E56 FS","SI20LCB2B05,SI20LCB6B10,SI20UMC5C45,SI20UMC5Y45,SI20UMC5C55,SI20UMC5E56","SI20LCA8M10 FS,SI20LCB6B41 SS,SI20LCB7B15 FS,SI20SGC6J28 FS,SI20SGY7A30 FS","SI20LCA8M10,SI20LCB6B41,SI20LCB7B15,SI20SGC6J28,SI20SGY7A30",104,,107,,24,,25,,76,344,"HK1003 -Blackpoint D2 - Rev.0E DD30092021"
1-1353,SI20UBA5B45,"(RFE) STEEL STRUCTURE 20UBA7910/20",5121,"HK1003-Rev.0E-3",TT_FinMile,"55902",-,-,-,0,TK_NotStart,21/08/2022,,21/08/2022,,"SI20UBA5B15 FS","SI20UBA5B15","SI20UBA7-25 FS,SI20BZL7A15 FS,SI20UBA5-87 FS,SI20UBA7-25 FF","SI20UBA7-25,SI20BZL7A15,SI20UBA5-87,SI20UBA7-25",107,,107,,25,,25,,78,656,"HK1003 -Blackpoint D2 - Rev.0E DD30092021"
1-1354,SI20UBA5B15,"ERECTION STEEL PLATFORMS 20UBA7910/20",5121,"HK1003-Rev.0E-3",TT_Task,"55902",-,-,-,0,TK_NotStart,08/08/2022,,21/08/2022,,"SI20UBA5B10 FS","SI20UBA5B10","SI20UBA5B45 FS","SI20UBA5B45",105,,107,,24,,25,,77,656,"HK1003 -Blackpoint D2 - Rev.0E DD30092021"
1-1355,SI--GM-2B70,"(DF) I&C INPUT (MEL) SUMP PUMP GM",5121,"HK1003-Rev.0E-3",TT_FinMile,"55902",-,-,-,0,TK_NotStart,10/12/2021,,10/12/2021,,"SI--GM-2B85 SS","SI--GM-2B85","SI--C--2-55 FS","SI--C--2-55",70,,70,,16,,16,,42,1280,"HK1003 -Blackpoint D2 - Rev.0E DD30092021"
1-1356,SI20MA-6B35,"COMMON FINAL ALIGNMENT K-,LP-TURBINE AND GENERATOR",5121,"HK1003-Rev.0E-3",TT_Task,"55902",-,-,-,0,TK_NotStart,21/01/2023,,30/01/2023,,"SI20MA-6B39 FS,SI20MKA6E17 FS,SI20MA-6B16 FS,SI20MA-6B36 FS,SI20MA-6B84 FS","SI20MA-6B39,SI20MKA6E17,SI20MA-6B16,SI20MA-6B36,SI20MA-6B84","SI20MA-6D57 FS,SI20MKA6-37 FS,SI20MA-6D55 FS,SI20MKA6-26 FF,SI20MKA6F15 FS","SI20MA-6D57,SI20MKA6-37,SI20MA-6D55,SI20MKA6-26,SI20MKA6F15",129,,130,,30,,30,,89,8,"HK1003 -Blackpoint D2 - Rev.0E DD30092021"
1-1357,SI20MKA6F03,"PREASSEMBLING OF SLIPRING BASEPLATE MKA",5121,"HK1003-Rev.0E-3",TT_Task,"55902",-,-,-,0,TK_NotStart,17/08/2022,,22/08/2022,,"SI20MA-6C55 FS,SI20MKA6F00 FS","SI20MA-6C55,SI20MKA6F00","SI20MKA6F05 FS,SI20MKA6F05# SS","SI20MKA6F05,SI20MKA6F05#",106,,107,,24,,25,,78,448,"HK1003 -Blackpoint D2 - Rev.0E DD30092021"
1-1358,SI20MKA6F00,"PREPARATION OF FOUNDATION FOR SLIPRING MKA",5121,"HK1003-Rev.0E-3",TT_Task,"55902",-,-,-,0,TK_NotStart,27/07/2022,,31/07/2022,,"SI20MKA6-09 FS","SI20MKA6-09","SI20MKA6F03 FS","SI20MKA6F03",103,,104,,24,,24,,75,520,"HK1003 -Blackpoint D2 - Rev.0E DD30092021"
1-1359,SI20MKA6F05,"PREASSEMBLING OF SLIPRING SET MKA",5121,"HK1003-Rev.0E-3",TT_Task,"55902",-,-,-,0,TK_NotStart,23/08/2022,,27/08/2022,,"SI20MKA6F03 FS","SI20MKA6F03","SI20MKA6-26 FS,SI20MKA6F16 FS,SI20MKA6F17 FS","SI20MKA6-26,SI20MKA6F16,SI20MKA6F17",107,,108,,25,,25,,78,448,"HK1003 -Blackpoint D2 - Rev.0E DD30092021"
1-1360,SI--PAC2B14,"CONFIRMED PUMP CURVES CIRC. CW PUMP PAC",5121,"HK1003-Rev.0E-3",TT_Mile,"55902",-,-,-,100,TK_Complete,23/04/2021,23/04/2021,23/04/2021,23/04/2021,"SI--PAC2B80 FS,SI--PAC2B75 FS,SI-----1-01 SS","SI--PAC2B80,SI--PAC2B75,SI-----1-01","SI--P--2I45 FS","SI--P--2I45",37,37,37,37,8,8,8,8,9,,"HK1003 -Blackpoint D2 - Rev.0E DD30092021"
1-1361,SI20QC-4-25,"TRANSPORT DOSING CONTAINER 20QC",5121,"HK1003-Rev.0E-3",TT_Task,"55902",-,-,-,0,TK_NotStart,08/06/2022,,02/08/2022,,"SI20QC-3-80 FS","SI20QC-3-80","SI20QC-4-40 FS","SI20QC-4-40",96,,104,,22,,24,,69,1632,"HK1003 -Blackpoint D2 - Rev.0E DD30092021"
1-1362,SI-----8-07&,"HV GRID REQUIRED FROM CLIENT (FOR BACK ENERGISING)",5121,"HK1003-Rev.0E-3",TT_Mile,"55902",-,-,-,0,TK_NotStart,02/03/2023,,02/03/2023,,"SI-----1-05 SS,SI20TP-260& FS,CL20ACA7-82 FS","SI-----1-05,SI20TP-260&,CL20ACA7-82","SI20B--8-50 SS,SI20MB-9-15 FS","SI20B--8-50,SI20MB-9-15",134,,134,,31,,31,,92,16,"HK1003 -Blackpoint D2 - Rev.0E DD30092021"
1-1363,SI-----1-03,"(A) FULL ENGINEERING START = FULL TEAM SETUP (no Hardware Order before NTP)",5121,"HK1003-Rev.0E-3",TT_Mile,"55902",-,-,-,100,TK_Complete,01/08/2020,01/08/2020,01/08/2020,01/08/2020,"SI-----1-01 FS","SI-----1-01","SI--3332-17 FS,SI--3332-63 FS,SI--3332-62 FS,SI20---2M10 SS,SI--HA-2A11 FS,SI--HA-2-85 FS,SI--PAB2-15 FS,SI--6662-26 FS,SI20LCB2B92 FS,SI--LCB2B75 FS,SI20QC-2-40 FS,SI--SA-2-01 FS,SI--EK-2-77 SS,SI20USC2-12 SS,SI--PAC2B75 SS,SI20PAA2-77 SS,SI--PAD2-75 SS,SI20UBA2K02 SS,SI--ZTA2A00 SS,SI20HS-2-88 SS,SI20QU-2-05 SS,SI20LCL2B75 SS,SI--HB-2A05 SS,SI--BZL2-86 SS,SI20QC-2-05 SS,SI20LBG2C60 FS,SI--BFT2-15 SS,SI20XKA2-15 SS,SI--BAC2-15 SS,SI--BAA2-60 FS,SI--SMM2-75 SS,SI20MBA2D75 SS,SI--C--2-10 SS,SI--BZP2-15 SS,SI--BZK2-15 SS,SI--B--2-55 SS,SI--G--2I45 SS,SI20UHA2B-8 SS,SI20UMC2B-20 SS,SI--3331-61 SS,SI--3332-60 SS,SI--2222-10 SS,SI--2222-32 SS,SI--2222-38 SS,SI--2222-37 SS,SI--2222-36 SS,SI--2222-35 SS,SI--2222-34 SS,SI--2222-33 SS,SI--2222-31 FS,SI--2222-30 FS,SI--1102-10 SS,SI--PGB2D61 FS,SI20UMC2B-5 FS,SI--CYA2-15 FS,SI--C--2C50 SS,SP20MB-3-26 SS,SI20BAT2-15 FS,SI--5552-11 FS,SI--EK-2-75 FS,SI-----1-04 SS,SI20SMG2-75 FS,SI--2222-63 FS,SI--B--2-50 SS,SI20UPY2-5 FS,SI--B--2A50 SS,SI20XKA2-60 SS,SI--2222-60 FS,SI--BZL2-15 FS,SI--3332-01 SS,SI--HA-2-79 FS,SI--2222-108 FS,SI--UBA2G15 FS,SI--3331-31 FS,SI--BAA2-21 FS,SI--C--3E86 FS,SI--UMC2Y82 FS,SI--UMC2A01 FS,SI20UMC2B01 FS,SI20UPY2-01 FS,SI20URA2B01 FS,SI20URA2B5 FS,SI20URD2B01 FS,SI20UEY2B01 FS,SI-P222-127 FS,SI20HA-3D25 FF,SI20HA-3D25 FS,SI20HA-3-15# FS,SI20HA-3-15# FF,SI20HA-3D26 FS,SI20BZK7A26 FS,SI--2222-100 FS,SI20USX2-46 FS","SI--3332-17,SI--3332-63,SI--3332-62,SI20---2M10,SI--HA-2A11,SI--HA-2-85,SI--PAB2-15,SI--6662-26,SI20LCB2B92,SI--LCB2B75,SI20QC-2-40,SI--SA-2-01,SI--EK-2-77,SI20USC2-12,SI--PAC2B75,SI20PAA2-77,SI--PAD2-75,SI20UBA2K02,SI--ZTA2A00,SI20HS-2-88,SI20QU-2-05,SI20LCL2B75,SI--HB-2A05,SI--BZL2-86,SI20QC-2-05,SI20LBG2C60,SI--BFT2-15,SI20XKA2-15,SI--BAC2-15,SI--BAA2-60,SI--SMM2-75,SI20MBA2D75,SI--C--2-10,SI--BZP2-15,SI--BZK2-15,SI--B--2-55,SI--G--2I45,SI20UHA2B-8,SI20UMC2B-20,SI--3331-61,SI--3332-60,SI--2222-10,SI--2222-32,SI--2222-38,SI--2222-37,SI--2222-36,SI--2222-35,SI--2222-34,SI--2222-33,SI--2222-31,SI--2222-30,SI--1102-10,SI--PGB2D61,SI20UMC2B-5,SI--CYA2-15,SI--C--2C50,SP20MB-3-26,SI20BAT2-15,SI--5552-11,SI--EK-2-75,SI-----1-04,SI20SMG2-75,SI--2222-63,SI--B--2-50,SI20UPY2-5,SI--B--2A50,SI20XKA2-60,SI--2222-60,SI--BZL2-15,SI--3332-01,SI--HA-2-79,SI--2222-108,SI--UBA2G15,SI--3331-31,SI--BAA2-21,SI--C--3E86,SI--UMC2Y82,SI--UMC2A01,SI20UMC2B01,SI20UPY2-01,SI20URA2B01,SI20URA2B5,SI20URD2B01,SI20UEY2B01,SI-P222-127,SI20HA-3D25,SI20HA-3D25,SI20HA-3-15#,SI20HA-3-15#,SI20HA-3D26,SI20BZK7A26,SI--2222-100,SI20USX2-46",0,0,0,0,0,0,0,0,0,,"HK1003 -Blackpoint D2 - Rev.0E DD30092021"
1-1364,SI--5552-61,"PREPARATION ROOM MODEL",5121,"HK1003-Rev.0E-3",TT_Task,"55902",-,-,-,100,TK_Complete,18/04/2021,18/04/2021,01/05/2021,01/05/2021,"SI--5552-60 FS","SI--5552-60","SI--5552-62 FS","SI--5552-62",37,37,39,39,8,8,9,9,9,,"HK1003 -Blackpoint D2 - Rev.0E DD30092021"
1-1365,SI--PAC2B65,"(DF) INPUT FOR M2 CIRC. CW PUMP PAC (required for Piping M2)",5121,"HK1003-Rev.0E-3",TT_FinMile,"55902",-,-,-,100,TK_Complete,30/04/2021,30/04/2021,30/04/2021,30/04/2021,"SI--PAC2B85 FS,SI--PAC2B85 SS","SI--PAC2B85,SI--PAC2B85","SI---4P2A10 SS,SI---3P2A10 FS","SI---4P2A10,SI---3P2A10",38,38,38,38,9,9,9,9,10,,"HK1003 -Blackpoint D2 - Rev.0E DD30092021"
1-1366,SI20MAG6-33,"INSTALLING AND WELDING OF SEISMIC TIE-DOWNS MAG20",5121,"HK1003-Rev.0E-3",TT_Task,"55902",-,-,-,0,TK_NotStart,27/06/2022,,30/06/2022,,"SI20MAG6-22 FS","SI20MAG6-22","SI20MAG6-34 FS","SI20MAG6-34",99,,99,,23,,23,,71,256,"HK1003 -Blackpoint D2 - Rev.0E DD30092021"
1-1367,SI20MAG6-22,"FITTING/WELDING OF GUIDE BOLTS AND STIFFENING PLATES AND NOZZLES IN THE BOTTOM PLATE MAG20",5121,"HK1003-Rev.0E-3",TT_Task,"55902",-,-,-,0,TK_NotStart,17/06/2022,,26/06/2022,,"SI20MAG6-18 FS","SI20MAG6-18","SI20MAG6-26 SS,SI20MAG6-30 SS,SI20MAG6-33 FS","SI20MAG6-26,SI20MAG6-30,SI20MAG6-33",97,,99,,22,,23,,70,184,"HK1003 -Blackpoint D2 - Rev.0E DD30092021"
1-1368,SI20MAG6-18,"ALIGNMENT OF CONDENSER STEAM SHELL MAG20",5121,"HK1003-Rev.0E-3",TT_Task,"55902",-,-,-,0,TK_NotStart,16/06/2022,,16/06/2022,,"SI20MAG6-16 SS","SI20MAG6-16","SI20MAG6-22 FS,SI20MAG6-65 FS","SI20MAG6-22,SI20MAG6-65",97,,97,,22,,22,,69,184,"HK1003 -Blackpoint D2 - Rev.0E DD30092021"
1-1369,SI20MAG6-16,"PLACING STEAM SHELL (UPPER PART) AND CONNECTION/WELDING TO LOWER PART MAG20",5121,"HK1003-Rev.0E-3",TT_Task,"55902",-,-,-,0,TK_NotStart,09/06/2022,,22/06/2022,,"SI20MAG6-14 FS","SI20MAG6-14","SI20MAG6-11 SS,SI20MA-6-07 SS,SI20MAG6-18 SS","SI20MAG6-11,SI20MA-6-07,SI20MAG6-18",96,,98,,22,,23,,69,144,"HK1003 -Blackpoint D2 - Rev.0E DD30092021"
1-1370,SI20MAG6-10,"INSTALLING PROTECTIVE COVER FOR COOLING TUBES IN THE STEAM SHELL (LOWER) MAG20",5121,"HK1003-Rev.0E-3",TT_Task,"55902",-,-,-,0,TK_NotStart,30/05/2022,,01/06/2022,,"SI20MAG6-06 SS,SI20MAG6-63 FS","SI20MAG6-06,SI20MAG6-63","SI20MAG6-11 FS","SI20MAG6-11",95,,95,,22,,22,,67,280,"HK1003 -Blackpoint D2 - Rev.0E DD30092021"
1-1371,SI20MAG6-06,"PLACING HOTWELL MAG20",5121,"HK1003-Rev.0E-3",TT_Mile,"55902",-,-,-,0,TK_NotStart,26/05/2022,,26/05/2022,,"SI20UMC5B49 FS,SI20MAG6-04 FS,SI20SMM6-70 FS,SI20MAG6-61 FS","SI20UMC5B49,SI20MAG6-04,SI20SMM6-70,SI20MAG6-61","SI20MAG6-10 SS,SI20MAG6-14 FS,SI20MAJ6-25 FS,SI20MAG6-63 FS","SI20MAG6-10,SI20MAG6-14,SI20MAJ6-25,SI20MAG6-63",94,,94,,22,,22,,66,144,"HK1003 -Blackpoint D2 - Rev.0E DD30092021"
1-1372,SI20MAN6E40,"(RFP) READY FOR PIPE CONNECTION BYPASS STATION - LBA/LBB",5121,"HK1003-Rev.0E-3",TT_FinMile,"55902",-,-,-,0,TK_NotStart,25/08/2022,,25/08/2022,,"SI20MAG6-46 FS,SI20MAG6-26 FS","SI20MAG6-46,SI20MAG6-26","SI20LBB6J17 FF,SI20LBA6J15 FF,SI20LBA6H15 FF,SI11LBA6H71 FS,SI20LBA6J71 FS,SI20LCA6A15 FS,SI20LCA6A15 FF,SI20LCA6A46 FF,SI20MAG6-64# FS","SI20LBB6J17,SI20LBA6J15,SI20LBA6H15,SI11LBA6H71,SI20LBA6J71,SI20LCA6A15,SI20LCA6A15,SI20LCA6A46,SI20MAG6-64#",107,,107,,25,,25,,79,184,"HK1003 -Blackpoint D2 - Rev.0E DD30092021"
1-1373,SI20MAN6-36,"FLOATING OF BYPASS STATION MAN ""Einschwimmen, etc."" MAG20",5121,"HK1003-Rev.0E-3",TT_Task,"55902",-,-,-,0,TK_NotStart,06/08/2022,,15/08/2022,,"SI20MAN6-15 FS,SI20MA-6A11 FS,SI20MAG6-42 FS,SI---1P6A05 FS","SI20MAN6-15,SI20MA-6A11,SI20MAG6-42,SI---1P6A05","SI20MAG6-46 FS","SI20MAG6-46",105,,106,,24,,24,,77,184,"HK1003 -Blackpoint D2 - Rev.0E DD30092021"
1-1374,SI20UTG5-12,"(H) START PLACING FORMWORK 20UTG01",5121,"HK1003-Rev.0E-3",TT_Mile,"55902",-,-,-,0,TK_NotStart,02/05/2022,,02/05/2022,,"SI20UTG5-10 FS,SI-----5-21& FS,SI20UTG2-90 FS","SI20UTG5-10,SI-----5-21&,SI20UTG2-90","SI20UTG5-14 FS","SI20UTG5-14",91,,91,,21,,21,,61,2600,"HK1003 -Blackpoint D2 - Rev.0E DD30092021"
1-1375,SI20UTG5-10,"WORK PREPARATION, EXCAVATION 20UTG01",5121,"HK1003-Rev.0E-3",TT_Task,"55902",-,-,-,0,TK_NotStart,18/04/2022,,01/05/2022,,"SI20UTG2-40 FS,SI-----5-22 FS,SI-----5-21& FS,SI-----5-20 FS,SI20UMC5I45 FS,SI-P222-84 FS,SI20UTG2-89 FS","SI20UTG2-40,SI-----5-22,SI-----5-21&,SI-----5-20,SI20UMC5I45,SI-P222-84,SI20UTG2-89","SI20UTG5-12 FS,SI-P222-131# FF,SI-P222-131# SS","SI20UTG5-12,SI-P222-131#,SI-P222-131#",89,,91,,20,,21,,58,2600,"HK1003 -Blackpoint D2 - Rev.0E DD30092021"
1-1376,SP--C--2-40,"CONNECTION DIAGRAM OF E-COMPONENTS FOR ELECTRICAL MODULES ASSEMBLY",5121,"HK1003-Rev.0E-3",TT_Mile,"55902",-,-,-,0,TK_NotStart,20/01/2022,,20/01/2022,,"SP--C--2-15 SS","SP--C--2-15","SI20UBA4-50 FS,SI20UBA4B40 SS","SI20UBA4-50,SI20UBA4B40",76,,76,,17,,17,,46,592,"HK1003 -Blackpoint D2 - Rev.0E DD30092021"
1-1377,SP--B--2-14,"CMI's & INTERLOCKING DIAGRAMS & SIGNAL LIST AVAILABLE FOR I&C",5121,"HK1003-Rev.0E-3",TT_Mile,"55902",-,-,-,0,TK_NotStart,21/10/2021,,21/10/2021,,"SP--B--2-59 FS,SP--B--2-12 FS","SP--B--2-59,SP--B--2-12","SP--C--2-15 SS","SP--C--2-15",63,,63,,14,,14,,35,592,"HK1003 -Blackpoint D2 - Rev.0E DD30092021"
1-1378,SP--B--2-16,"TYPICALS FOR GT PLANT TO I&C",5121,"HK1003-Rev.0E-3",TT_Mile,"55902",-,-,-,100,TK_Complete,08/05/2021,08/05/2021,08/05/2021,08/05/2021,"SP--B--2-50 SS,SI--B--2A50 SS","SP--B--2-50,SI--B--2A50","SP--B--2-18 SS","SP--B--2-18",40,40,40,40,9,9,9,9,11,,"HK1003 -Blackpoint D2 - Rev.0E DD30092021"
1-1379,SP--C--2-15,"CONNECTION DIAGRAM (I&C INTERFACE) OF E-COMPONENTS FOR GT AUTOM.",5121,"HK1003-Rev.0E-3",TT_Mile,"55902",-,-,-,0,TK_NotStart,21/10/2021,,21/10/2021,,"SP--MKC2-85 SS,SP--B--2-14 SS,SP--CJT2-76 FS,SP--CJT2-86 SS,SP--CJT2-85 SS,SP--CJT2-77 FS,SP--B--2-18 SS","SP--MKC2-85,SP--B--2-14,SP--CJT2-76,SP--CJT2-86,SP--CJT2-85,SP--CJT2-77,SP--B--2-18","SP--C--2-40 SS","SP--C--2-40",63,,63,,14,,14,,35,592,"HK1003 -Blackpoint D2 - Rev.0E DD30092021"
1-1380,SI20BUK2-85,"CONTRACT INTO FORCE INVERTER, CONVERTER, BATTERY CHARGER BRU/BTL",5121,"HK1003-Rev.0E-3",TT_Mile,"55902",-,-,-,0,TK_NotStart,12/10/2021,,12/10/2021,,"SI20BUK2-80 FS,SI--UBA2G85 FS,SI--B--2A55 FS","SI20BUK2-80,SI--UBA2G85,SI--B--2A55","SI20BTL3-25 FS,SI20BRU3-25 FS,SI20BRU3-26 FS","SI20BTL3-25,SI20BRU3-25,SI20BRU3-26",62,,62,,14,,14,,33,688,"HK1003 -Blackpoint D2 - Rev.0E DD30092021"
1-1381,SI20BUK2-80,"QUOTATION STAGE INVERTER, CONVERTER, BATTERY CHARGER BRU/BTL",5121,"HK1003-Rev.0E-3",TT_Task,"55902",-,-,-,78,TK_Active,19/08/2021,19/08/2021,11/10/2021,,"SI20BUK2-75 FS","SI20BUK2-75","SI20BUK2-85 FS","SI20BUK2-85",54,54,62,,12,12,14,,26,688,"HK1003 -Blackpoint D2 - Rev.0E DD30092021"
1-1382,SI20MA-6A20,"INSTALLATION AND ALIGNMENT REHEAT STOP AND CONTROL IP-VALVE MAB",5121,"HK1003-Rev.0E-3",TT_Task,"55902",-,-,-,0,TK_NotStart,24/08/2022,,30/08/2022,,"SI20MA-6C55 FS,SI20MA-6A12 FS,SI20MA-6A15 FS","SI20MA-6C55,SI20MA-6A12,SI20MA-6A15","SI20MA-6A16# FF,SI20MA-6A25 FS,SI20MA-6A30 FS,SI20MA-6A55 FS","SI20MA-6A16#,SI20MA-6A25,SI20MA-6A30,SI20MA-6A55",107,,108,,25,,25,,78,888,"HK1003 -Blackpoint D2 - Rev.0E DD30092021"
1-1383,SI20MA-6A30,"INSTALLATION LP-FLAP (ERECTION ON PLATFORM)",5121,"HK1003-Rev.0E-3",TT_Task,"55902",-,-,-,0,TK_NotStart,20/11/2022,,03/12/2022,,"SI20MA-6B39 SS,SI20MA-6A20 FS","SI20MA-6B39,SI20MA-6A20","SI20MA-6A50 FS,SI20MA-6D55 FS,SI20MAX6A65 SS,SI20MA-6A16# FF","SI20MA-6A50,SI20MA-6D55,SI20MAX6A65,SI20MA-6A16#",120,,122,,28,,28,,85,464,"HK1003 -Blackpoint D2 - Rev.0E DD30092021"
1-1384,SI20BZK4-40,"(OTD-OS) ON SITE MV/LV CABLES20/00BZK (LOT 1)",5121,"HK1003-Rev.0E-3",TT_FinMile,"55902",-,-,-,0,TK_NotStart,13/07/2022,,13/07/2022,,"SI20BZK4-25 FS,SI20BZK4-45 FS","SI20BZK4-25,SI20BZK4-45","SI20BZK7-25 SS","SI20BZK7-25",101,,101,,23,,23,,73,464,"HK1003 -Blackpoint D2 - Rev.0E DD30092021"
1-1385,SI20CHA8-10,"(TOP-20CHA) GENERATOR & TRANSFORMER  PROTECTION 20CHA/CHY",5121,"HK1003-Rev.0E-3",TT_FinMile,"55902",-,-,-,0,TK_NotStart,13/03/2023,,13/03/2023,,"SI--B--2-68 FS,SI--9998-20& SS,SI20UBA7-25 FS,SI20SGY7A15 FS,SI20UBA7-15 FS,SI--B--2-93 FS","SI--B--2-68,SI--9998-20&,SI20UBA7-25,SI20SGY7A15,SI20UBA7-15,SI--B--2-93","SI20CHA8-25 FS,SI20CHA8-11 FS,SI20CH-8-25 FS","SI20CHA8-25,SI20CHA8-11,SI20CH-8-25",136,,136,,31,,31,,92,16,"HK1003 -Blackpoint D2 - Rev.0E DD30092021"
1-1386,SI20MA-6B04,"ALIGNMENT LP1-OUTER CASING TO LONGITUDINAL AND TRAVERSE AXES AND VERTICALY WITH DEFELCTION CURVE MA",5121,"HK1003-Rev.0E-3",TT_Task,"55902",-,-,-,0,TK_NotStart,16/08/2022,,25/08/2022,,"SI20MA-6B02 FS","SI20MA-6B02","SI20MA-6B06 FS,SI20LBF6H47 FS","SI20MA-6B06,SI20LBF6H47",106,,107,,24,,25,,77,8,"HK1003 -Blackpoint D2 - Rev.0E DD30092021"
1-1387,SI20MKA6-30,"PREPARATION AND PLACING GENERATOR ON FOUNDATION MKA",5121,"HK1003-Rev.0E-3",TT_Task,"55902",-,-,-,0,TK_NotStart,24/07/2022,,26/07/2022,,"SI20MKA6-09 FS,SI20MA-5-26 FS","SI20MKA6-09,SI20MA-5-26","SI20MKA6-12 FS","SI20MKA6-12",103,,103,,24,,24,,75,368,"HK1003 -Blackpoint D2 - Rev.0E DD30092021"
1-1388,SI20MKA6E17,"GENERATOR TO FIXATORS MKA",5121,"HK1003-Rev.0E-3",TT_Task,"55902",-,-,-,0,TK_NotStart,07/09/2022,,09/09/2022,,"SI20MKA6-32 FS","SI20MKA6-32","SI20MKA6-18 FS,SI20MKA6-20 FS,SI20MA-6B35 FS","SI20MKA6-18,SI20MKA6-20,SI20MA-6B35",109,,109,,25,,25,,80,448,"HK1003 -Blackpoint D2 - Rev.0E DD30092021"
1-1389,SI20LBG8A25,"COLD COMMISSIONING AUXILIARY STEAM SYSTEM LBG",5121,"HK1003-Rev.0E-3",TT_Task,"55902",-,-,-,0,TK_NotStart,02/05/2023,,05/05/2023,,"SI--2222-37 SS,SI20CPC8-27 FS,SI20LBG8A10 FS,SI20BF-8-25 SS,SI-PM-40 FS,SI20TPM26A8-30 FS,SI20LBB8H25 FS","SI--2222-37,SI20CPC8-27,SI20LBG8A10,SI20BF-8-25,SI-PM-40,SI20TPM26A8-30,SI20LBB8H25","SI20--P6-75 FS,SI--L--8A25# FF,SI--L--8A25# SS","SI20--P6-75,SI--L--8A25#,SI--L--8A25#",143,,143,,33,,33,,96,56,"HK1003 -Blackpoint D2 - Rev.0E DD30092021"
1-1390,SI--ULA2-60,"(MS3) CONCRETE STRUCTURE FINAL DIMENSIONS, LOADS AVAILABLE 20ULA",5121,"HK1003-Rev.0E-3",TT_FinMile,"55902",-,-,-,100,TK_Complete,04/05/2021,04/05/2021,04/05/2021,04/05/2021,"SI--LAC2B60 FS","SI--LAC2B60","SI--ULA2-77 FS,SI--ULA2-70 FS","SI--ULA2-77,SI--ULA2-70",39,39,39,39,9,9,9,9,11,,"HK1003 -Blackpoint D2 - Rev.0E DD30092021"
1-1391,SI--LBF2B65,"(DF) INPUT FOR M2 BYPASS STATION 20LBF",5121,"HK1003-Rev.0E-3",TT_FinMile,"55902",-,-,-,100,TK_Complete,29/06/2021,29/06/2021,29/06/2021,29/06/2021,"SI--LBF2B75 FS,SI-----1-01 SS,SI--LBF2B85 FS","SI--LBF2B75,SI-----1-01,SI--LBF2B85","SI---1P2A10 FS","SI---1P2A10",47,47,47,47,11,11,11,11,19,,"HK1003 -Blackpoint D2 - Rev.0E DD30092021"
1-1392,SI20GM-6H16,"ERECTION PIPES DRAINAGE SYSTEM 00GM FROM WATER TRETAMENT TO UBH02",5121,"HK1003-Rev.0E-3",TT_Task,"55902",-,-,-,0,TK_NotStart,18/07/2022,,28/08/2022,,"SI20GM-6E40 FS,SI---5P6A09 FS,SI--G--2-50 FS,SI20UBH5E48 FS","SI20GM-6E40,SI---5P6A09,SI--G--2-50,SI20UBH5E48","SI20GM-8F10 FS,SI20-6-16# FF,SI20-6-16# SS","SI20GM-8F10,SI20-6-16#,SI20-6-16#",102,,108,,23,,25,,74,1880,"HK1003 -Blackpoint D2 - Rev.0E DD30092021"
1-1393,SI20UBH2-80,"DETAIL DESIGN, CHECKER CONCRETE STRUCTURE 20UBH01",5121,"HK1003-Rev.0E-3",TT_Task,"55902",-,-,-,100,TK_Complete,18/06/2021,18/06/2021,22/07/2021,22/07/2021,"SI20UBH2-81 FS","SI20UBH2-81","SI20UBH2-75 FS,SI20UBH2-93 FS,SI20UBH2-79 FF","SI20UBH2-75,SI20UBH2-93,SI20UBH2-79",45,45,50,50,10,10,11,11,18,,"HK1003 -Blackpoint D2 - Rev.0E DD30092021"
1-1394,SI20BBA8-10,"(TOP-20BBA) MV SWITCHGEAR 20BBA INCL. HSBTS",5121,"HK1003-Rev.0E-3",TT_FinMile,"55902",-,-,-,0,TK_NotStart,13/02/2023,,13/02/2023,,"SI20BZP7-160 FS,SI20UBA7-17 FS,SI20SGY7A15 FS,SI20UBA7-104 FS,SI20UBA7-25 FS,SI20UBA7-15 FS,SI20UBA4-42 FS,SI--9998-20& SS,SI--B--2-68 FS,SI--B--2-93 FS","SI20BZP7-160,SI20UBA7-17,SI20SGY7A15,SI20UBA7-104,SI20UBA7-25,SI20UBA7-15,SI20UBA4-42,SI--9998-20&,SI--B--2-68,SI--B--2-93","SI20BBA8-25 FS,SI20BBA8-36 FS","SI20BBA8-25,SI20BBA8-36",132,,132,,30,,30,,90,64,"HK1003 -Blackpoint D2 - Rev.0E DD30092021"
1-1395,SI20UBH5-20,"WORK PREPARATION, EXCAVATION 20UBH01",5121,"HK1003-Rev.0E-3",TT_Task,"55902",-,-,-,0,TK_NotStart,02/02/2022,,09/02/2022,,"SI20UBH2-75 FS,SI-----5-22 FS,SI-----5-21& FS,SI-----5-20 FS,SI20UMC5B95 FS,SI-P222-148 FS,SI-P222-84 FS,SI20UBH2-96 FS","SI20UBH2-75,SI-----5-22,SI-----5-21&,SI-----5-20,SI20UMC5B95,SI-P222-148,SI-P222-84,SI20UBH2-96","SI20UBH5-10 FS,SI-P222-131# FF,SI-P222-131# SS","SI20UBH5-10,SI-P222-131#,SI-P222-131#",78,,79,,18,,18,,47,1496,"HK1003 -Blackpoint D2 - Rev.0E DD30092021"
1-1396,SI20UBH2-75,"(F) CONCRETE STRUCTURE DWGS ON SITE RELEASED FOR EXECUTION 20UBH01",5121,"HK1003-Rev.0E-3",TT_FinMile,"55902",-,-,-,0,TK_NotStart,01/02/2022,,01/02/2022,,"SI20UBH2-80 FS,SI20UBH2-79 FS,SI20UBH2-95 FS,SI-UZA2-65 FS","SI20UBH2-80,SI20UBH2-79,SI20UBH2-95,SI-UZA2-65","SI20UBH5-20 FS","SI20UBH5-20",78,,78,,18,,18,,47,1496,"HK1003 -Blackpoint D2 - Rev.0E DD30092021"
1-1397,SI20UBH2-60,"(MS3) CONCRETE STRUCTURE FINAL DIMENSIONS, LOADS AVAILABLE 20UBH01",5121,"HK1003-Rev.0E-3",TT_FinMile,"55902",-,-,-,100,TK_Complete,28/05/2021,28/05/2021,28/05/2021,28/05/2021,"SI--GM-2B60 FS","SI--GM-2B60","SI20UBH2-79 FS,SI20UBH2-81 FS","SI20UBH2-79,SI20UBH2-81",42,42,42,42,10,10,10,10,14,,"HK1003 -Blackpoint D2 - Rev.0E DD30092021"
1-1398,SI20UBH2-79,"PREPARATION FOUNDATION GROUNDING DWGS 20UBH01",5121,"HK1003-Rev.0E-3",TT_Task,"55902",-,-,-,100,TK_Complete,09/07/2021,09/07/2021,22/07/2021,22/07/2021,"SI20UBH2-60 FS,SI20UBH2-80 FF","SI20UBH2-60,SI20UBH2-80","SI20UBH2-75 FS,SI20UBH2-93 FS","SI20UBH2-75,SI20UBH2-93",48,48,50,50,11,11,11,11,21,,"HK1003 -Blackpoint D2 - Rev.0E DD30092021"
1-1399,SI20CPC8A30,"I&C FIELD COMMISSIONING WSC (2) CPC",5121,"HK1003-Rev.0E-3",TT_Task,"55902",-,-,-,0,TK_NotStart,03/06/2023,,23/06/2023,,"SI20--P6-75 FS,SI20CPC8A25 FS","SI20--P6-75,SI20CPC8A25","SI20HA-9A45 FS,SI20--P6-77# FF,SI20MB-9-15 FS,SI20--P6-77# SS","SI20HA-9A45,SI20--P6-77#,SI20MB-9-15,SI20--P6-77#",148,,150,,34,,35,,97,56,"HK1003 -Blackpoint D2 - Rev.0E DD30092021"
1-1400,SI20EK-3-80,"(RFS) READY FOR SHIPMENT GAS FINAL FILTER/ PREHEATER 20EKG",5121,"HK1003-Rev.0E-3",TT_FinMile,"55902",-,-,-,0,TK_NotStart,16/08/2022,,16/08/2022,,"SI--EK-4-10 FS","SI--EK-4-10","SI--EK-2-05 FS,SI20EK-4-25 FS","SI--EK-2-05,SI20EK-4-25",106,,106,,24,,24,,77,656,"HK1003 -Blackpoint D2 - Rev.0E DD30092021"
1-1401,SI20EK-4-40,"(OTD-OS) ON SITE GAS FINAL FILTER/ PREHEATER 20EKG",5121,"HK1003-Rev.0E-3",TT_FinMile,"55902",-,-,-,0,TK_NotStart,31/12/2022,,31/12/2022,,"SI20EK-4-25 FS","SI20EK-4-25","SI20EK-6-15 FS","SI20EK-6-15",126,,126,,29,,29,,88,16,"HK1003 -Blackpoint D2 - Rev.0E DD30092021"
1-1402,SI20EK-4-25,"TRANSPORT GAS FINAL FILTER/ PREHEATER 20EKG",5121,"HK1003-Rev.0E-3",TT_Task,"55902",-,-,-,0,TK_NotStart,05/11/2022,,30/12/2022,,"SI20EK-3-80 FS","SI20EK-3-80","SI20EK-4-40 FS,SI20UHA6-10 SS","SI20EK-4-40,SI20UHA6-10",118,,125,,27,,29,,84,16,"HK1003 -Blackpoint D2 - Rev.0E DD30092021"
1-1403,SI--SMM2-75,"CONTRACT REVIEW / PREP. RFQ CRANE 20SMM01/02 FOR 20UMC",5121,"HK1003-Rev.0E-3",TT_Task,"55902",-,-,-,100,TK_Complete,15/01/2021,15/01/2021,01/02/2021,01/02/2021,"SI--3331-32 FS,SI-----1-03 SS,SI-----1-05 FS","SI--3331-32,SI-----1-03,SI-----1-05","SI--SMM2-80 FS,SI--SMM2-20 FS","SI--SMM2-80,SI--SMM2-20",23,23,26,26,5,5,6,6,2,,"HK1003 -Blackpoint D2 - Rev.0E DD30092021"
1-1404,SI--SMM2-20,"(DF) BASIC DESIGN INPUT FOR CRANES 20SMM01/02 FOR 20UMC",5121,"HK1003-Rev.0E-3",TT_FinMile,"55902",-,-,-,100,TK_Complete,01/02/2021,01/02/2021,01/02/2021,01/02/2021,"SI--SMM2-75 FS","SI--SMM2-75","SI--SMM2-80 FS","SI--SMM2-80",26,26,26,26,6,6,6,6,3,,"HK1003 -Blackpoint D2 - Rev.0E DD30092021"
1-1405,SI--G--2A05,"PREPARATION P&ID'S G-SYSTEMS (INPUT FOR M1)",5121,"HK1003-Rev.0E-3",TT_Task,"55902",-,-,-,100,TK_Complete,04/01/2021,04/01/2021,14/02/2021,14/02/2021,"SI--G--2-20 FS,SI--3332-02 FS,SI--P--2-05 FF","SI--G--2-20,SI--3332-02,SI--P--2-05","SI--PM-2-30 FS,SI--C--2-10 SS,SI20MBA2D75 FS,SI20USC2-12 FS,SI--GM-2B75 FS,SI--G--2-10 FS,SI-----2-00 FS","SI--PM-2-30,SI--C--2-10,SI20MBA2D75,SI20USC2-12,SI--GM-2B75,SI--G--2-10,SI-----2-00",22,22,28,28,5,5,6,6,1,,"HK1003 -Blackpoint D2 - Rev.0E DD30092021"
1-1406,SI--G--2-30,"REVISION P&ID'S AFTER 3D DRV G-SYSTEMS",5121,"HK1003-Rev.0E-3",TT_Task,"55902",-,-,-,100,TK_Complete,11/07/2021,11/07/2021,07/09/2021,07/09/2021,"SI--G--2-84 FS,SI--G--2-65 FS","SI--G--2-84,SI--G--2-65","SI--G--2-50 FS","SI--G--2-50",49,49,57,57,11,11,13,13,21,,"HK1003 -Blackpoint D2 - Rev.0E DD30092021"
1-1407,SI20SGY7A15,"ERECTION FIRE DETECTION SYSTEM IN  20UBA76xx/77xx/7410/73xx/7210/7110 SGY",5121,"HK1003-Rev.0E-3",TT_Task,"55902",-,-,-,0,TK_NotStart,26/08/2022,,08/09/2022,,"SI20SGY4A40 FS,SI--SGY2-05 FS,SI20UBA7-17 FS,SI20UBA7-104 FS,SI20SGY4A40 FF,SI-P222-65 FS","SI20SGY4A40,SI--SGY2-05,SI20UBA7-17,SI20UBA7-104,SI20SGY4A40,SI-P222-65","SI20BBA8-10 FS,SI20CHA8-10 FS,SI20UBA8-12 FS,SI20BAW5A15 FS,SI20SGJ6A15 FS,SI20MKC8-75 FS,SI20MKC8-76 FS,SI-P222-67 FS","SI20BBA8-10,SI20CHA8-10,SI20UBA8-12,SI20BAW5A15,SI20SGJ6A15,SI20MKC8-75,SI20MKC8-76,SI-P222-67",107,,109,,25,,25,,79,1224,"HK1003 -Blackpoint D2 - Rev.0E DD30092021"
1-1408,SI20UBA7-15,"INSTALLATION ELECTRICAL MODULES 20UBA7910/20",5121,"HK1003-Rev.0E-3",TT_Task,"55902",-,-,-,0,TK_NotStart,01/08/2022,,10/08/2022,,"SI--PEI7-20 SS,SI--PEI7-20 FS,SI--PEE7-20 FS,SI--2227-68 FS,SI20UBA4B40 FS,SI20UBA7-26 FS,SI20UBA5-15 FS","SI--PEI7-20,SI--PEI7-20,SI--PEE7-20,SI--2227-68,SI20UBA4B40,SI20UBA7-26,SI20UBA5-15","SI--CYA7A15 FS,SI20BZK7D25 SS,SI20SGJ6A15 FS,SI20SGC6J15 SS,SI20BZK7A25 FS,SI20BBA8-10 FS,SI20BAW5A15 FS,SI20SGM6-15 SS,SI20CPA8-10 SS,SI20CPD8-11 FS,SI20UBA7-25 SS,SI20CHA8-10 FS,SI20CJ-8-25 FS,SI20SGM6-20 FS,SI20SGC6J20 FS,SI20SGY7A31 FS,SI20MKC8-75 FS,SI20MKC8-76 FS,SI20BZL7A15 FS,SI20UBA5B10 SS,SI20UBA8-12 FS,SI20BBA8-38 FS,SI20BBA8-49 FS,SI20BBA8-48 FS","SI--CYA7A15,SI20BZK7D25,SI20SGJ6A15,SI20SGC6J15,SI20BZK7A25,SI20BBA8-10,SI20BAW5A15,SI20SGM6-15,SI20CPA8-10,SI20CPD8-11,SI20UBA7-25,SI20CHA8-10,SI20CJ-8-25,SI20SGM6-20,SI20SGC6J20,SI20SGY7A31,SI20MKC8-75,SI20MKC8-76,SI20BZL7A15,SI20UBA5B10,SI20UBA8-12,SI20BBA8-38,SI20BBA8-49,SI20BBA8-48",104,,105,,24,,24,,76,656,"HK1003 -Blackpoint D2 - Rev.0E DD30092021"
1-1409,SI20UBA7-17,"INSTALLATION ELECTRICAL MODULES 20UBA7710/20",5121,"HK1003-Rev.0E-3",TT_Task,"55902",-,-,-,0,TK_NotStart,06/07/2022,,26/07/2022,,"SI--PEI7-20 FS,SI20BZP7-160 SS,SI--BZK2-81 FS,SI20UBA4-42 FS,SI--B--2-68 FS,SI20UBA7-102 FS,SI--B--2-93 FS","SI--PEI7-20,SI20BZP7-160,SI--BZK2-81,SI20UBA4-42,SI--B--2-68,SI20UBA7-102,SI--B--2-93","SI20BFC8-10 FS,SI20SGY7A15 FS,SI20UBA8-11 FS,SI20BBA8-10 FS,SI20BFT8-10 FS,SI20UBA7-104 FF,SI20BZL7-38 SS,SI20SGM6-15 FS,SI20CPA8-10 FS,SI20MBA8-10 FS,SI20SGC6J15 FS,SI20BZK7D25 SS,SI20BZK7A27 FF,SI20UMC5D50 FS,SI20BFA8-10 FS,SI--CYA7A15 FS,SI20CJ-8-10 FS,SI20UBA8-12 FS,SI20CPC8-10 FS,SI20CHA8-11 FS,SI20CJ-8-25 FS,SI20BTA3A26 FS,SI20UBA7-37# FF,SI20BZK7B26 SS,SI--BRU8-22 SS,SI20CR-8-10 SS,SI20UBA8-12 SS,SI--2226-55 SS,SI--2222-35 SS,SI20UBA5B61 SS,SI20UBA7-29 SS,SI20BFT8-78 FS,SI20BBA8-38 FS,SI20BBA8-49 FS,SI20BBA8-48 FS,SI20BZK7D10# SS","SI20BFC8-10,SI20SGY7A15,SI20UBA8-11,SI20BBA8-10,SI20BFT8-10,SI20UBA7-104,SI20BZL7-38,SI20SGM6-15,SI20CPA8-10,SI20MBA8-10,SI20SGC6J15,SI20BZK7D25,SI20BZK7A27,SI20UMC5D50,SI20BFA8-10,SI--CYA7A15,SI20CJ-8-10,SI20UBA8-12,SI20CPC8-10,SI20CHA8-11,SI20CJ-8-25,SI20BTA3A26,SI20UBA7-37#,SI20BZK7B26,SI--BRU8-22,SI20CR-8-10,SI20UBA8-12,SI--2226-55,SI--2222-35,SI20UBA5B61,SI20UBA7-29,SI20BFT8-78,SI20BBA8-38,SI20BBA8-49,SI20BBA8-48,SI20BZK7D10#",100,,103,,23,,24,,72,592,"HK1003 -Blackpoint D2 - Rev.0E DD30092021"
1-1410,SI20UBA8-12,"(TOP-20UBA7) POWER CONTROL CENTER (ELECTRICAL MODULES) 20UBA7xxx",5121,"HK1003-Rev.0E-3",TT_FinMile,"55902",-,-,-,0,TK_NotStart,31/01/2023,,31/01/2023,,"SI20UBA7-104 FS,SI--B--2-68 FS,SI20BZK7D25 FS,SI--9998-20& SS,SI20UBA4-42 FS,SI20SGY7A15 FS,SI20UBA7-17 FS,SI20BZP7-160 FS,SI20BTA3A26 FS,SI--PEI7-20 FS,SI20UEY5-45 FS,SI20BZK4-41 FS,SI20BZK7-25 FS,SI20UBA7-17 SS,SI20UCA7-15 FS,SI--B--7-55 FS,SI20BZK7A28 FS,SI20BZK7B32 FS,SI--B--2-93 FS,SI20BZK7A36 FS,SI20UBA7-15 FS,SI20UBA7-25 FS,SI20SGY7A31 FS","SI20UBA7-104,SI--B--2-68,SI20BZK7D25,SI--9998-20&,SI20UBA4-42,SI20SGY7A15,SI20UBA7-17,SI20BZP7-160,SI20BTA3A26,SI--PEI7-20,SI20UEY5-45,SI20BZK4-41,SI20BZK7-25,SI20UBA7-17,SI20UCA7-15,SI--B--7-55,SI20BZK7A28,SI20BZK7B32,SI--B--2-93,SI20BZK7A36,SI20UBA7-15,SI20UBA7-25,SI20SGY7A31","SI20UBA8G27 FS,SI20BU-8-25 FS,SI20SGM8-25 FS,SI20UBA8G25 FS,SI20UBA8G30 FS,SI20UBA8G29 FS","SI20UBA8G27,SI20BU-8-25,SI20SGM8-25,SI20UBA8G25,SI20UBA8G30,SI20UBA8G29",130,,130,,30,,30,,89,64,"HK1003 -Blackpoint D2 - Rev.0E DD30092021"
1-1411,SI20LBG6A15,"ERECTION, NDT, PT PIPES / VALVES 20LBG",5121,"HK1003-Rev.0E-3",TT_Task,"55902",-,-,-,0,TK_NotStart,05/07/2022,,12/09/2022,,"SI20--P6A00& SS,SI20LAC6B40 FS,SI---1P6A05 FS,SI20HA-6-40 FF","SI20--P6A00&,SI20LAC6B40,SI---1P6A05,SI20HA-6-40","SI20LBA8J10 FS,SI20LBA8H10 FS,SI20LBB8J11 FS,SI20ZTA6A00 FS,SI20LBG8A10 FS,SI--LBG6H15# FF,SI20ZTB6A00 FS,SI20ZT-6A00 FS,SI20LBG6A45 FS,SI20--P6-73 FS,SI--LBG6H15# SS,SI20--P6-77 FS,SI20-6-16# FF,SI20-6-16# SS","SI20LBA8J10,SI20LBA8H10,SI20LBB8J11,SI20ZTA6A00,SI20LBG8A10,SI--LBG6H15#,SI20ZTB6A00,SI20ZT-6A00,SI20LBG6A45,SI20--P6-73,SI--LBG6H15#,SI20--P6-77,SI20-6-16#,SI20-6-16#",100,,110,,23,,25,,72,1456,"HK1003 -Blackpoint D2 - Rev.0E DD30092021"
1-1412,SI20LBG6A45,"INSULATION PIPES / VALVES FOR STEAM SYSTEM 20LBG",5121,"HK1003-Rev.0E-3",TT_Task,"55902",-,-,-,0,TK_NotStart,28/11/2022,,08/01/2023,,"SI20LBG6A15 FS,SI-P2I-15 FS,SI20LBG7A15 FF","SI20LBG6A15,SI-P2I-15,SI20LBG7A15","SI20LBA8J10 FS,SI20LBA8H10 FS,SI20LBB8J11 FS,SI20LBG8A10 FS,SI20--P6-75 FS,SI20---6A15# FF","SI20LBA8J10,SI20LBA8H10,SI20LBB8J11,SI20LBG8A10,SI20--P6-75,SI20---6A15#",121,,127,,28,,29,,86,848,"HK1003 -Blackpoint D2 - Rev.0E DD30092021"
1-1413,SI20CYQ8-10,"(TOP-20CYQ) GAS DETECTION SYSTEM FOR GT NOISE ENCLOSURE MPB",5121,"HK1003-Rev.0E-3",TT_FinMile,"55902",-,-,-,0,TK_NotStart,27/04/2023,,27/04/2023,,"SI20BZK7L25 FS,SI20BZK7F26 FS,SI20SGJ6A15 FS,SI20MBA8-23& FS","SI20BZK7L25,SI20BZK7F26,SI20SGJ6A15,SI20MBA8-23&","SI20CYQ8-25 FS,SI20MBA8-10 FS","SI20CYQ8-25,SI20MBA8-10",142,,142,,33,,33,,96,8,"HK1003 -Blackpoint D2 - Rev.0E DD30092021"
1-1414,SI20BZL7C15,"LIGHTING AND SMALL POWER INSTALLATION 20ULA AREA",5121,"HK1003-Rev.0E-3",TT_Task,"55902",-,-,-,0,TK_NotStart,20/08/2022,,18/10/2022,,"SI--BZL2-05 FS,SI20LAC6B40 FS,SI20BZP7-135 FS,SI--BZL4-40 FS","SI--BZL2-05,SI20LAC6B40,SI20BZP7-135,SI--BZL4-40","SI--CYA7A15 FS,SI20BZL7-16# FF,SI20BZL7-16# SS,SI20BZK7F29 FS,SI20BZL8A10 FS","SI--CYA7A15,SI20BZL7-16#,SI20BZL7-16#,SI20BZK7F29,SI20BZL8A10",107,,115,,24,,26,,78,1424,"HK1003 -Blackpoint D2 - Rev.0E DD30092021"
1-1415,SI--CP-3-80,"(RFS) READY FOR SHIPMENT BOP I&C FIELD CABINETS",5121,"HK1003-Rev.0E-3",TT_FinMile,"55902",-,-,-,0,TK_NotStart,17/06/2022,,17/06/2022,,"SI--CP-4-10 FS","SI--CP-4-10","SI--CP-4-25 FS","SI--CP-4-25",97,,97,,22,,22,,70,784,"HK1003 -Blackpoint D2 - Rev.0E DD30092021"
1-1416,SI--G--2-10,"ENGINEERING P&ID'S G-SYSTEMS",5121,"HK1003-Rev.0E-3",TT_Task,"55902",-,-,-,100,TK_Complete,29/01/2021,29/01/2021,29/05/2021,29/05/2021,"SI--G--2A05 FS,SI-----2-00 SS","SI--G--2A05,SI-----2-00","SI--C--2C50 SS,SI--G--2B45 FS,SI--G--2-75 FS,SI--G--2-89 SS","SI--C--2C50,SI--G--2B45,SI--G--2-75,SI--G--2-89",25,25,43,43,6,6,10,10,3,,"HK1003 -Blackpoint D2 - Rev.0E DD30092021"
1-1417,SI20BAB4-25,"TRANSPORT CT / GROUNDING CUBICLE 20BAB",5121,"HK1003-Rev.0E-3",TT_Task,"55902",-,-,-,0,TK_NotStart,05/06/2022,,30/07/2022,,"SI20UBA4G25 SS,SI20BAB2-11 FS","SI20UBA4G25,SI20BAB2-11","SI20BAB7-15 FS","SI20BAB7-15",96,,104,,22,,24,,68,2176,"HK1003 -Blackpoint D2 - Rev.0E DD30092021"
1-1418,SI20BAW5D17,"ERECTION LIGHTNING PROTECTION 00UEN",5121,"HK1003-Rev.0E-3",TT_Task,"55902",-,-,-,0,TK_NotStart,26/09/2022,,23/10/2022,,"SI20BAW3-25 FS,SI20UEN5D49 FS,SI20EK-6-19 FS","SI20BAW3-25,SI20UEN5D49,SI20EK-6-19","SI20EK-8-10 FS","SI20EK-8-10",112,,116,,26,,27,,82,1648,"HK1003 -Blackpoint D2 - Rev.0E DD30092021"
1-1419,SI20BAA7-15,"ERECTION IPB PART 1 - 20BAT TO 20BAC",5121,"HK1003-Rev.0E-3",TT_Task,"55902",-,-,-,0,TK_NotStart,07/09/2022,,25/10/2022,,"SI--BAA2-05 FS,SI--1102-20 FS,SI20MBJ7-10 FS,SI20BAA4-40 FS,SI20UBX5B45 FS,SI20SCA6-40 FF,SI20UBY5-48 FS,SI20UBL5C-45 FF,SI20BAA7-67 FS,SI20BAT7-17 FF,SI20BAT7-15 SS,SI20UBA7-26 FS,SI20BAC7-15 FS","SI--BAA2-05,SI--1102-20,SI20MBJ7-10,SI20BAA4-40,SI20UBX5B45,SI20SCA6-40,SI20UBY5-48,SI20UBL5C-45,SI20BAA7-67,SI20BAT7-17,SI20BAT7-15,SI20UBA7-26,SI20BAC7-15","SI20BAA7-66 FS,SI20UBF5D15 FS,SI20CHA8-25 SS,SI20BAA7-65 FS,SI20BAA7-56 FS,SI20ACA7-65 SS,SI20BAW5A16 FS","SI20BAA7-66,SI20UBF5D15,SI20CHA8-25,SI20BAA7-65,SI20BAA7-56,SI20ACA7-65,SI20BAW5A16",109,,116,,25,,27,,80,288,"HK1003 -Blackpoint D2 - Rev.0E DD30092021"
1-1420,SI20BZK7B26,"LV/CONTROL CABLE WORKS IN 00UCA",5121,"HK1003-Rev.0E-3",TT_Task,"55902",-,-,-,0,TK_NotStart,01/11/2022,,28/11/2022,,"SI20BZK4-41 FS,SI20UCA7-16 FS,SI--PEI7-20 FS,SI20UEY5-45 FS,SI--B--2-68 FS,SI20UBA7-104 FS,SI20BZK7-25 FS,SI20UBA7-17 SS,SI20UCA7-15 FS,SI--B--7-55 FS,SI20UBY5-62 FS,SI--B--2-93 FS,SI20BZP7B40 FS","SI20BZK4-41,SI20UCA7-16,SI--PEI7-20,SI20UEY5-45,SI--B--2-68,SI20UBA7-104,SI20BZK7-25,SI20UBA7-17,SI20UCA7-15,SI--B--7-55,SI20UBY5-62,SI--B--2-93,SI20BZP7B40","SI--BRU7-19# SS,SI--BRU8-22 FS,SI--BRU7-19# FF","SI--BRU7-19#,SI--BRU8-22,SI--BRU7-19#",117,,121,,27,,28,,84,632,"HK1003 -Blackpoint D2 - Rev.0E DD30092021"
1-1421,SI--BRU8-22,"(TOP-20BT) DC-SYSTEMS",5121,"HK1003-Rev.0E-3",TT_FinMile,"55902",-,-,-,0,TK_NotStart,13/02/2023,,13/02/2023,,"SI20BZK7B26 FS,SI--PEI7-20 FS,SI20UEY5-45 FS,SI--B--2-68 FS,SI20UBA7-104 FS,SI20BZK4-41 FS,SI20BZK7-25 FS,SI20UBA7-17 SS,SI20UCA7-15 FS,SI--B--7-55 FS,SI--B--2-93 FS","SI20BZK7B26,SI--PEI7-20,SI20UEY5-45,SI--B--2-68,SI20UBA7-104,SI20BZK4-41,SI20BZK7-25,SI20UBA7-17,SI20UCA7-15,SI--B--7-55,SI--B--2-93","SI--BRU8-21 FS","SI--BRU8-21",132,,132,,30,,30,,90,16,"HK1003 -Blackpoint D2 - Rev.0E DD30092021"
1-1422,SI20LCL3B26,"MANUFACTURING / SHOP TEST BOILER BLOWDOWN PUMP 20LCL",5121,"HK1003-Rev.0E-3",TT_Task,"55902",-,-,-,37,TK_Active,31/05/2021,31/05/2021,28/04/2022,,"SI20LCL3B25 FS,SI20LCL2B85 FS","SI20LCL3B25,SI20LCL2B85","SI20LCL3B70 FS,SI20LCL3B80 FS","SI20LCL3B70,SI20LCL3B80",43,43,90,,10,10,21,,15,336,"HK1003 -Blackpoint D2 - Rev.0E DD30092021"
1-1423,SI--9998-20&,"START COLD COMMISSIONING E- / I&C SYSTEM A / B / C / MKC / XKA",5121,"HK1003-Rev.0E-3",TT_Mile,"55902",-,-,-,0,TK_NotStart,01/02/2023,,01/02/2023,,"SI-----1-05 SS","SI-----1-05","SI20BFA8-10 SS,SI20XKA8-10 SS,SI20CHA8-10 SS,SI20BFT8-10 SS,SI20CR-8-10 SS,SI20CYA8A10 SS,SI20BZL8-10 SS,SI20CJ-8-10 SS,SI20BZL8B12 SS,SI20CPC8-10 SS,SI20CPB8-10 SS,SI20UBA8-12 SS,SI20CPC8A10 SS,SI20BBA8-10 SS,SI20BAT8-10 SS,SI20CPA8-10 SS,SI--CYA8-10 SS,SI20CJ-8-25 SS,SI20BFT8-78 FS,SI20BFA8-36 FS","SI20BFA8-10,SI20XKA8-10,SI20CHA8-10,SI20BFT8-10,SI20CR-8-10,SI20CYA8A10,SI20BZL8-10,SI20CJ-8-10,SI20BZL8B12,SI20CPC8-10,SI20CPB8-10,SI20UBA8-12,SI20CPC8A10,SI20BBA8-10,SI20BAT8-10,SI20CPA8-10,SI--CYA8-10,SI20CJ-8-25,SI20BFT8-78,SI20BFA8-36",130,,130,,30,,30,,89,64,"HK1003 -Blackpoint D2 - Rev.0E DD30092021"
1-1424,SI--9998-21&,"START COLD COMMISSIONING WSC / HRSG SYSTEM L / P / H",5121,"HK1003-Rev.0E-3",TT_Mile,"55902",-,-,-,0,TK_NotStart,15/04/2023,,15/04/2023,,"SI-----1-05 SS","SI-----1-05","SI20HAD8G10 SS,SI20LBB8J11 SS,SI20PGB8-10 SS,SI20PAH8-25 SS,SI20LBG8A10 SS,SI20HAD8E10 SS,SI20LBA8J10 SS,SI20LCA8M10 SS,SI20LBA8H10 SS,SI20LAC8B10 SS,SI20LCL8B10 SS,SI20LBH8D10 SS,SI20HAD8F10 SS","SI20HAD8G10,SI20LBB8J11,SI20PGB8-10,SI20PAH8-25,SI20LBG8A10,SI20HAD8E10,SI20LBA8J10,SI20LCA8M10,SI20LBA8H10,SI20LAC8B10,SI20LCL8B10,SI20LBH8D10,SI20HAD8F10",141,,141,,32,,32,,95,40,"HK1003 -Blackpoint D2 - Rev.0E DD30092021"
1-1425,SI--9998-22&,"START COLD COMMISSIONING AUX. SYSTEM E / G / S / Q",5121,"HK1003-Rev.0E-3",TT_Mile,"55902",-,-,-,0,TK_NotStart,14/02/2023,,14/02/2023,,"SI-----1-05 SS","SI-----1-05","SI20GHD8A10 FS,SI20GM-8B10 FS,SI20QJ-8B12 FS,SI20QJ-8B11 FS,SI20SAM8-11 FS,SI20SAM8-10 FS,SI20SAM8-29 FS,SI20GM-8B27 FS","SI20GHD8A10,SI20GM-8B10,SI20QJ-8B12,SI20QJ-8B11,SI20SAM8-11,SI20SAM8-10,SI20SAM8-29,SI20GM-8B27",132,,132,,30,,30,,90,224,"HK1003 -Blackpoint D2 - Rev.0E DD30092021"
1-1426,SI20HAD8E25,"COLD COMMISSIONING HRSG HP SYSTEM (FOR CHEMICAL CLEANING) 20HAD10",5121,"HK1003-Rev.0E-3",TT_Task,"55902",-,-,-,0,TK_NotStart,29/04/2023,,12/05/2023,,"SI20BF-8-25 SS,SI20HAD8E10 FS,SI20CPC8-25 FS,SI20HAA8E17 FS,SI-PM-40 FS,SI-P222-83 FS","SI20BF-8-25,SI20HAD8E10,SI20CPC8-25,SI20HAA8E17,SI-PM-40,SI-P222-83","SI20HAA8F26 SS,SI20--P6-75 FS,SI20HA-8-25# SS,SI20HA-8-25# FF","SI20HAA8F26,SI20--P6-75,SI20HA-8-25#,SI20HA-8-25#",143,,144,,33,,33,,96,0,"HK1003 -Blackpoint D2 - Rev.0E DD30092021"
1-1427,SP--B--2-08,"INPUT DATA FOR ELECTRICAL MODULES INTERNAL CABLES",5121,"HK1003-Rev.0E-3",TT_Mile,"55902",-,-,-,100,TK_Complete,06/07/2021,06/07/2021,06/07/2021,06/07/2021,"SP--B--2-18 FS","SP--B--2-18","SP--B--2-13 FS","SP--B--2-13",48,48,48,48,11,11,11,11,21,,"HK1003 -Blackpoint D2 - Rev.0E DD30092021"
1-1428,SP--B--2-13,"PREPARATION OF CABLE PULLING CARDS ELECTRICAL MODULES INTERNAL",5121,"HK1003-Rev.0E-3",TT_Task,"55902",-,-,-,0,TK_NotStart,04/11/2021,,11/11/2021,,"SP--B--2-08 FS","SP--B--2-08","SI20UBA4B40 FS,SI20UBA3G55 FS,SI20UBA3E57 FS,SI20UBA3H55 FS,SI20UBA3G82 FS,SI20UBA3J55 FS,SI20UBA3G85 FS,SP20UBA3H55 FS,SI20UBA3C20 FS,SI20UBA3K55 FS,SI20UBA4-70 FS","SI20UBA4B40,SI20UBA3G55,SI20UBA3E57,SI20UBA3H55,SI20UBA3G82,SI20UBA3J55,SI20UBA3G85,SP20UBA3H55,SI20UBA3C20,SI20UBA3K55,SI20UBA4-70",65,,66,,15,,15,,37,584,"HK1003 -Blackpoint D2 - Rev.0E DD30092021"
1-1429,SI20SGA8B26,"(TOP-20SGA-01) FIRE FIGHTING SEA WATER RING MAIN AND OUTDOOR HYDRANTS",5121,"HK1003-Rev.0E-3",TT_FinMile,"55902",-,-,-,0,TK_NotStart,11/03/2023,,11/03/2023,,"SI20SGA6A27 FS","SI20SGA6A27","SI20SGA8-26 FS,SI20SGA8B27 FS,SI20SGC8-10 SS,SI20SGC8E10 SS,SI20TPF1A8-30 FS,SI20TPF1B8-30 FS,SI20TPF1C8-30 FS,SI20TPF2A8-30 FS","SI20SGA8-26,SI20SGA8B27,SI20SGC8-10,SI20SGC8E10,SI20TPF1A8-30,SI20TPF1B8-30,SI20TPF1C8-30,SI20TPF2A8-30",136,,136,,31,,31,,92,16,"HK1003 -Blackpoint D2 - Rev.0E DD30092021"
1-1430,SI--SGA4A40,"(OTD-OS) ON SITE FIRE FIGHTING RING MAIN SGA",5121,"HK1003-Rev.0E-3",TT_FinMile,"55902",-,-,-,0,TK_NotStart,30/06/2022,,30/06/2022,,"SI--SGA4A25 FS","SI--SGA4A25","SI20SGA6A27 FS,SI20SGA6A26 FS","SI20SGA6A27,SI20SGA6A26",99,,99,,23,,23,,71,208,"HK1003 -Blackpoint D2 - Rev.0E DD30092021"
1-1431,SI20SGA6A26,"ERECTION FIRE FIGHTING RING MAIN CONNECTIONS / HYDRANTS SGA",5121,"HK1003-Rev.0E-3",TT_Task,"55902",-,-,-,0,TK_NotStart,01/07/2022,,27/11/2022,,"SI--SG-2-06 FS,SI--SGA4A40 FS,SI--SG-2-27 FS,SI--SG-2-38 FS,SI20TP-193& FS,SI20TP-190& FS,SI20TP-193& SS,SI-P222-65 FS,SI-UZA2-90 SS","SI--SG-2-06,SI--SGA4A40,SI--SG-2-27,SI--SG-2-38,SI20TP-193&,SI20TP-190&,SI20TP-193&,SI-P222-65,SI-UZA2-90","SI20SGA6A27 FS,SI-P222-156 SS,SI-P222-133 FS,SI-P222-173 FF,SI-P222-135 FS","SI20SGA6A27,SI-P222-156,SI-P222-133,SI-P222-173,SI-P222-135",99,,121,,23,,28,,72,208,"HK1003 -Blackpoint D2 - Rev.0E DD30092021"
1-1432,SI20SGA6A27,"ERECTION FIRE FIGHTING CONN.PIPE SGA",5121,"HK1003-Rev.0E-3",TT_Task,"55902",-,-,-,0,TK_NotStart,28/11/2022,,25/12/2022,,"SI20SGA4-44 FS,SI20UMC5C15 FS,SI--SGA4A40 FS,SI20SGA6A26 FS,SI-P222-65 FS","SI20SGA4-44,SI20UMC5C15,SI--SGA4A40,SI20SGA6A26,SI-P222-65","SI20SGA8B26 FS,SI20SGA8B28 FS,SI-P222-133 FS,SI-P222-133 FF,SI-P222-173 FF,SI-P222-135 FS","SI20SGA8B26,SI20SGA8B28,SI-P222-133,SI-P222-133,SI-P222-173,SI-P222-135",121,,125,,28,,29,,86,208,"HK1003 -Blackpoint D2 - Rev.0E DD30092021"
1-1433,SI20PAA4-40,"(OTD-OS) ON SITE COOLING TOWER COARSE SCREEN 20PAA",5121,"HK1003-Rev.0E-3",TT_FinMile,"55902",-,-,-,0,TK_NotStart,30/08/2022,,30/08/2022,,"SI20PAA4-25 FS","SI20PAA4-25","SI20PAA6-15 FS","SI20PAA6-15",108,,108,,25,,25,,79,1536,"HK1003 -Blackpoint D2 - Rev.0E DD30092021"
1-1434,SI20PAA4-25,"TRANSPORT COOLING TOWER COARSE SCREEN 20PAA",5121,"HK1003-Rev.0E-3",TT_Task,"55902",-,-,-,0,TK_NotStart,06/07/2022,,30/08/2022,,"SI20PAA3-80 FS,SI20PAA4-41 FS","SI20PAA3-80,SI20PAA4-41","SI20PAA4-40 FS","SI20PAA4-40",100,,108,,23,,25,,72,1536,"HK1003 -Blackpoint D2 - Rev.0E DD30092021"
1-1435,SI20SG-4-25,"TRANSPORT FIRE FIGHTING SYSTEMS 20SGC/SGE/SGF/SGJ",5121,"HK1003-Rev.0E-3",TT_Task,"55902",-,-,-,0,TK_NotStart,25/03/2022,,19/05/2022,,"SI20SG-3-80 FS","SI20SG-3-80","SI20SG-4-41 FS","SI20SG-4-41",85,,93,,20,,21,,54,1408,"HK1003 -Blackpoint D2 - Rev.0E DD30092021"
1-1436,SI20EKT6I15,"ERECTION, NDT, PT PIPES - CONDENSER PREHEATING PIPE 20EKT",5121,"HK1003-Rev.0E-3",TT_Task,"55902",-,-,-,0,TK_NotStart,10/01/2023,,13/02/2023,,"SI20EK-6-21 FS,SI20LCA6A15 FF,SI20EKG6H15 SS,SI20EK-6-40 FF,SI---1P6A05 FS","SI20EK-6-21,SI20LCA6A15,SI20EKG6H15,SI20EK-6-40,SI---1P6A05","SI20-6-16# FF,SI20-6-16# SS,SI20EK-8-46 FS,SI20--P6-75 FS,SI20MB-9-15 FS,SI20EKG6I16 FF","SI20-6-16#,SI20-6-16#,SI20EK-8-46,SI20--P6-75,SI20MB-9-15,SI20EKG6I16",127,,132,,29,,30,,88,560,"HK1003 -Blackpoint D2 - Rev.0E DD30092021"
1-1437,SI20HB-4D25,"TRANSPORT STACK HRSG 20",5121,"HK1003-Rev.0E-3",TT_Task,"55902",-,-,-,0,TK_NotStart,08/02/2022,,14/03/2022,,"SI20HB-3D80 FS","SI20HB-3D80","SI20HB-4D40 FS","SI20HB-4D40",79,,84,,18,,19,,48,376,"HK1003 -Blackpoint D2 - Rev.0E DD30092021"
1-1438,SI20MAX8-25,"COLD COMMISSIONING ST HYDRAULIC SYSTEM MAX",5121,"HK1003-Rev.0E-3",TT_Task,"55902",-,-,-,0,TK_NotStart,07/06/2023,,16/06/2023,,"SI20BFG8-50 FS,SI20CPB8-25 FS,SI20MAX8-10 FS,SI20MA-6-66 FS,SI-PM-40 FS,SI20B--8-50 FS,SI20MA-8-25 SS","SI20BFG8-50,SI20CPB8-25,SI20MAX8-10,SI20MA-6-66,SI-PM-40,SI20B--8-50,SI20MA-8-25","SI20MAN8-25 FS,SI20MA-8-25# FS,SI20MAD8-25 SS","SI20MAN8-25,SI20MA-8-25#,SI20MAD8-25",148,,149,,34,,34,,98,40,"HK1003 -Blackpoint D2 - Rev.0E DD30092021"
1-1439,SI20HA-4D40,"(OTD-OS) ON SITE DRUMS HRSG20",5121,"HK1003-Rev.0E-3",TT_FinMile,"55902",-,-,-,0,TK_NotStart,14/03/2022,,14/03/2022,,"SI20HA-4D25 FS","SI20HA-4D25","SI20HA-6D17 FS","SI20HA-6D17",84,,84,,19,,19,,52,384,"HK1003 -Blackpoint D2 - Rev.0E DD30092021"
1-1440,SI20HA-3D80,"(RFS) READY FOR SHIPMENT DRUMS HRSG20",5121,"HK1003-Rev.0E-3",TT_FinMile,"55902",-,-,-,0,TK_NotStart,07/02/2022,,07/02/2022,,"SI20HA-4B11 FS","SI20HA-4B11","SI20HA-4D25 FS","SI20HA-4D25",79,,79,,18,,18,,48,384,"HK1003 -Blackpoint D2 - Rev.0E DD30092021"
1-1441,SI20MAV6-55&,"START LUBE OIL FLUSHING ST20",5121,"HK1003-Rev.0E-3",TT_Mile,"55902",-,-,-,0,TK_NotStart,21/02/2023,,21/02/2023,,"","","SI20MAV6-55 SS","SI20MAV6-55",133,,133,,31,,31,,91,32,"HK1003 -Blackpoint D2 - Rev.0E DD30092021"
1-1442,SI20MA-6A15,"INSTALLATION HP-VALVE MAA",5121,"HK1003-Rev.0E-3",TT_Task,"55902",-,-,-,0,TK_NotStart,17/08/2022,,23/08/2022,,"SI20MA-6A12 FS,SI20MA-6C11 FS,SI20MA-6C55 FS,SI20MA-5-26 FS","SI20MA-6A12,SI20MA-6C11,SI20MA-6C55,SI20MA-5-26","SI20MA-6A35 FS,SI20MA-6A55 FS,SI20MA-6D55 FS,SI20MA-6A60 FS,SI20MA-6A20 FS","SI20MA-6A35,SI20MA-6A55,SI20MA-6D55,SI20MA-6A60,SI20MA-6A20",106,,107,,24,,25,,78,584,"HK1003 -Blackpoint D2 - Rev.0E DD30092021"
1-1443,SI20MAX6-40,"(RFP) READY FOR PIPE CONNECTION HYDRAULIC SYSTEM MAX",5121,"HK1003-Rev.0E-3",TT_FinMile,"55902",-,-,-,0,TK_NotStart,16/09/2022,,16/09/2022,,"SI20MAX6-15 SS","SI20MAX6-15","SI20MAX6H15 FS","SI20MAX6H15",110,,110,,25,,25,,81,1144,"HK1003 -Blackpoint D2 - Rev.0E DD30092021"
1-1444,SI20MAW8-10,"(TOP-20MAW) ST SEAL STEAM SYSTEM",5121,"HK1003-Rev.0E-3",TT_FinMile,"55902",-,-,-,0,TK_NotStart,25/05/2023,,25/05/2023,,"SI20MA-6D70 FS,SI20MAA6A15 FS,SI20MA-6D45 FS,SI20MAW6H15 FS,SI20MAW6M11 FS,SI20BZK7-28 FS,SI20MAW7H15 FS,SI20MAW7-15 FS,SI20MAW6H45 FS,SI20BZK7C33 FS,SI20MAD8-26& FS","SI20MA-6D70,SI20MAA6A15,SI20MA-6D45,SI20MAW6H15,SI20MAW6M11,SI20BZK7-28,SI20MAW7H15,SI20MAW7-15,SI20MAW6H45,SI20BZK7C33,SI20MAD8-26&","SI20MAW8-25 FS","SI20MAW8-25",146,,146,,34,,34,,97,32,"HK1003 -Blackpoint D2 - Rev.0E DD30092021"
1-1445,SI20UBN2-40,"(F) CONCRETE STRUCTURE DWGS ON SITE RELEASED FOR EXECUTION 20UBN",5121,"HK1003-Rev.0E-3",TT_FinMile,"55902",-,-,-,0,TK_NotStart,30/06/2022,,30/06/2022,,"SI20UBN2-20 FS,SI20UBN2-15 FS,SI20UBN2-35 FS","SI20UBN2-20,SI20UBN2-15,SI20UBN2-35","SI20UBN5-5.00 FS","SI20UBN5-5.00",99,,99,,23,,23,,71,560,"HK1003 -Blackpoint D2 - Rev.0E DD30092021"
1-1446,SI--UBA2-75,"(F) CONCRETE STRUCTURE DWGS ON SITE RELEASED FOR EXECUTION UBA7xxx",5121,"HK1003-Rev.0E-3",TT_FinMile,"55902",-,-,-,0,TK_NotStart,01/02/2022,,01/02/2022,,"SI20UBA2-50 FS,SI--UBA2-69 FS,SI--UBA2-94 FS","SI20UBA2-50,SI--UBA2-69,SI--UBA2-94","SI20UBA5-7 FS,SI20UBY5-06 FS","SI20UBA5-7,SI20UBY5-06",78,,78,,18,,18,,47,424,"HK1003 -Blackpoint D2 - Rev.0E DD30092021"
1-1447,SP20MB-3C70,"TIMES OF COMPLETION (FINAL DATA IN KANLOG) GT INTERMEDIATE SHAFT 20MB-",5121,"HK1003-Rev.0E-3",TT_FinMile,"55902",-,-,-,0,TK_NotStart,01/04/2022,,01/04/2022,,"SI20MB-3-70 FF,SP20MB-3F25 FS","SI20MB-3-70,SP20MB-3F25","SI20---4-18 FS,SI20MBA4-26 FS,SI20---3-77 SS","SI20---4-18,SI20MBA4-26,SI20---3-77",86,,86,,20,,20,,54,184,"HK1003 -Blackpoint D2 - Rev.0E DD30092021"
1-1448,SP20MB-3F25,"PROCUREMENT / MANUFACTURING GT INTERMEDIATE SHAFT 20MB-",5121,"HK1003-Rev.0E-3",TT_Task,"55902",-,-,-,45,TK_Active,02/05/2021,02/05/2021,01/04/2022,,"SP20MB-3-25 FF,SP20MB-3-26 FS,SI-----1-04 FS","SP20MB-3-25,SP20MB-3-26,SI-----1-04","SP20MB-3C70 FS,SP20MB-3C25 FF,SI20MBA4-26 FS","SP20MB-3C70,SP20MB-3C25,SI20MBA4-26",39,39,86,,9,9,20,,10,408,"HK1003 -Blackpoint D2 - Rev.0E DD30092021"
1-1449,SI20UBA2G60,"(DF) INPUT FOR MS3 ELECTRICAL MODULES 20UBA7110/20/30",5121,"HK1003-Rev.0E-3",TT_FinMile,"55902",-,-,-,100,TK_Complete,23/06/2021,23/06/2021,23/06/2021,23/06/2021,"SI--UBA2K60 SS,SI-----1-01 SS","SI--UBA2K60,SI-----1-01","SI--UBA2-60 FS,SI--UBA2E60 FS,SI20UBA2B-5 FS","SI--UBA2-60,SI--UBA2E60,SI20UBA2B-5",46,46,46,46,10,10,10,10,18,,"HK1003 -Blackpoint D2 - Rev.0E DD30092021"
1-1450,SI--B--2-03,"KICK OFF ELECTRICAL PLANNING",5121,"HK1003-Rev.0E-3",TT_Mile,"55902",-,-,-,100,TK_Complete,26/02/2021,26/02/2021,26/02/2021,26/02/2021,"SI-----1-01 SS,SI-----1-05 FS","SI-----1-01,SI-----1-05","SI--BAW2-14 FS,SI--BZP2-15 FS,SI--BAW2-13 FS,SI--BAW2-03 FS,SI--B--2-92 FS,SI--BZP2-14 FS","SI--BAW2-14,SI--BZP2-15,SI--BAW2-13,SI--BAW2-03,SI--B--2-92,SI--BZP2-14",29,29,29,29,6,6,6,6,5,,"HK1003 -Blackpoint D2 - Rev.0E DD30092021"
1-1451,SI--B--2-44,"CABLE MANAGEMENT MEETING",5121,"HK1003-Rev.0E-3",TT_Mile,"55902",-,-,-,100,TK_Complete,11/03/2021,11/03/2021,11/03/2021,11/03/2021,"SI--BAW2-03 SS,SI-----1-05 FS","SI--BAW2-03,SI-----1-05","SI--B--2-65 FS,SI--BZK2-13 FS,SI--B--2-14 FS,SI--BZK2-15 FS","SI--B--2-65,SI--BZK2-13,SI--B--2-14,SI--BZK2-15",31,31,31,31,7,7,7,7,6,,"HK1003 -Blackpoint D2 - Rev.0E DD30092021"
1-1452,SI20UBA3K50,"ELECTRICAL MODULES READY FOR INSTALLATION OF COMP. ELECTRICAL MODULES 20UBA8110/20",5121,"HK1003-Rev.0E-3",TT_Mile,"55902",-,-,-,0,TK_NotStart,17/06/2022,,17/06/2022,,"SI20BFC4-10 FS,SI20UBA2K02 SS,SI20UBA3K25 FS","SI20BFC4-10,SI20UBA2K02,SI20UBA3K25","SI20UBA3K55 FS","SI20UBA3K55",97,,97,,22,,22,,70,80,"HK1003 -Blackpoint D2 - Rev.0E DD30092021"
1-1453,SI20UBA2K02,"E-AND I&C- MANUALS FOR COMP. INSTALL.  AVAILABLE ELECTRICAL MODULES 20UBA8110/20",5121,"HK1003-Rev.0E-3",TT_Mile,"55902",-,-,-,0,TK_NotStart,20/05/2022,,20/05/2022,,"SI-----1-03 SS","SI-----1-03","SI20UBA3K50 SS","SI20UBA3K50",93,,93,,21,,21,,66,80,"HK1003 -Blackpoint D2 - Rev.0E DD30092021"
1-1454,SI20UBA3K80,"(RFS) READY FOR SHIPMENT TO SITE FOR ELECTRICAL MODULES 20UBA8110/20",5121,"HK1003-Rev.0E-3",TT_FinMile,"55902",-,-,-,0,TK_NotStart,22/09/2022,,22/09/2022,,"SI20UBA4B13 FS","SI20UBA4B13","SI20UBA4K25 FS","SI20UBA4K25",111,,111,,26,,26,,81,80,"HK1003 -Blackpoint D2 - Rev.0E DD30092021"
1-1455,SI20UBA3K55,"INSTALL.COMP., INT.CABLING,FIRE PROT.,SHOP TEST ELECTRICAL MODULES 20UBA8110/20",5121,"HK1003-Rev.0E-3",TT_Task,"55902",-,-,-,0,TK_NotStart,17/06/2022,,01/09/2022,,"SI20BFC4-10 FS,SI20UBA3K50 FS,SP--B--2-13 FS,SI20UBA4-70 FS","SI20BFC4-10,SI20UBA3K50,SP--B--2-13,SI20UBA4-70","SI20UBA3B73 FS","SI20UBA3B73",97,,108,,22,,25,,70,80,"HK1003 -Blackpoint D2 - Rev.0E DD30092021"
1-1456,SI20UBA3K25,"MANUFACTURING ELECTRICAL MODULES 20UBA8110/20",5121,"HK1003-Rev.0E-3",TT_Task,"55902",-,-,-,0,TK_NotStart,28/01/2022,,16/06/2022,,"SI--UBA2G85 FS,SI--UBA2G85 SS,SI--2222-30 FS","SI--UBA2G85,SI--UBA2G85,SI--2222-30","SI20UBA3K20# SS,SI20UBA3K50 FS","SI20UBA3K20#,SI20UBA3K50",77,,97,,18,,22,,47,80,"HK1003 -Blackpoint D2 - Rev.0E DD30092021"
1-1457,SI20MBL6-15,"ERECTION AIR INTAKE DUCT INCL: SUPPORT STRUCTURE 20MBL",5121,"HK1003-Rev.0E-3",TT_Task,"55902",-,-,-,0,TK_NotStart,30/08/2022,,24/10/2022,,"SI20MBL6-05 FS,SI20MB-6-10 FS,SI20BAA7-67 FS","SI20MBL6-05,SI20MB-6-10,SI20BAA7-67","SI20MBL6-20 SS,SI20MBL6-25 FS","SI20MBL6-20,SI20MBL6-25",108,,116,,25,,27,,79,168,"HK1003 -Blackpoint D2 - Rev.0E DD30092021"
1-1458,SI20MBL8-10,"(TOP-20MBL) GT AIR INTAKE SYSTEM",5121,"HK1003-Rev.0E-3",TT_FinMile,"55902",-,-,-,0,TK_NotStart,27/04/2023,,27/04/2023,,"SP20MB-4A40 FS,SI20MBA6F15 FS,SI20MBA6A15 FS,SI20MBA6-40 FS,SI20MB-6A15 FS,SI20MBQ7H15 FS,SI20MB-7J15 FS,SI20MB-4A25 FS,SI20MBV6-55 FS,SI20MB-7H15 FS,SI20MBL7-25 FS,SI20BZK7F26 FS,SI20BZK7L25 FS,SI20MBL6-25 FS,SI20BZK7F26 FF,SI20MBA8-23& FS,SI20BZK7A34 FS","SP20MB-4A40,SI20MBA6F15,SI20MBA6A15,SI20MBA6-40,SI20MB-6A15,SI20MBQ7H15,SI20MB-7J15,SI20MB-4A25,SI20MBV6-55,SI20MB-7H15,SI20MBL7-25,SI20BZK7F26,SI20BZK7L25,SI20MBL6-25,SI20BZK7F26,SI20MBA8-23&,SI20BZK7A34","SI20MBL8-25 FS,SI20MBA8-10 FS","SI20MBL8-25,SI20MBA8-10",142,,142,,33,,33,,96,8,"HK1003 -Blackpoint D2 - Rev.0E DD30092021"
1-1459,SI20SGA8-26,"COLD COMMISSIONING INDOOR FIRE FIGHTING HYDRANTS 20SGA INSIDE 20UMC",5121,"HK1003-Rev.0E-3",TT_Task,"55902",-,-,-,0,TK_NotStart,11/04/2023,,24/04/2023,,"SI20SGA8B27 FS,SI20BFG8-50 FS,SI20SGA8B26 FS,SI20SGY7-15 FS,SI20MA-6-50 FS,SI20SGA8-10 SS,SI-PM-40 FS,SI20B--8-50 FS,SI20SGA8B28 FS","SI20SGA8B27,SI20BFG8-50,SI20SGA8B26,SI20SGY7-15,SI20MA-6-50,SI20SGA8-10,SI-PM-40,SI20B--8-50,SI20SGA8B28","SI20M--9-60 FS,SI20MB-9-15 FS","SI20M--9-60,SI20MB-9-15",140,,142,,32,,33,,94,536,"HK1003 -Blackpoint D2 - Rev.0E DD30092021"
1-1460,SI20QC-4-40,"(OTD-OS) ON SITE DOSING CONTAINER 20QC",5121,"HK1003-Rev.0E-3",TT_FinMile,"55902",-,-,-,0,TK_NotStart,02/08/2022,,02/08/2022,,"SI20QC-4-25 FS","SI20QC-4-25","SI20QC-6H17 FS,SI20QC-6-15 FS","SI20QC-6H17,SI20QC-6-15",104,,104,,24,,24,,76,1632,"HK1003 -Blackpoint D2 - Rev.0E DD30092021"
1-1461,SI20QU-2-85,"CONTRACT INTO FORCE SAMPLING CONTAINER 20QU",5121,"HK1003-Rev.0E-3",TT_Mile,"55902",-,-,-,100,TK_Complete,19/07/2021,19/07/2021,19/07/2021,19/07/2021,"SI20QU-2-80 FS","SI20QU-2-80","SI20QU-3-25 FS,SI20QU-3-26 FS,SI20UHX2-41 FS,SI20QU-2-65 FS","SI20QU-3-25,SI20QU-3-26,SI20UHX2-41,SI20QU-2-65",50,50,50,50,11,11,11,11,22,,"HK1003 -Blackpoint D2 - Rev.0E DD30092021"
1-1462,SI20QU-2-60,"(DF) INPUT FOR MS3 SAMPLING CONTAINER 20QU",5121,"HK1003-Rev.0E-3",TT_FinMile,"55902",-,-,-,100,TK_Complete,24/07/2021,24/07/2021,24/07/2021,24/07/2021,"SI20QU-2-75 FS,SI20QU-2-80 FS","SI20QU-2-75,SI20QU-2-80","SI20UHX2-10 FS","SI20UHX2-10",51,51,51,51,11,11,11,11,23,,"HK1003 -Blackpoint D2 - Rev.0E DD30092021"
1-1463,SI20SCA3-80,"(RFS) READY FOR SHIPMENT AIR COMPRESSOR SYSTEM 20SCA",5121,"HK1003-Rev.0E-3",TT_FinMile,"55902",-,-,-,0,TK_NotStart,26/07/2022,,26/07/2022,,"SI20SCA4B10 FS,SI20SCA3-26 FS,SI20SCA2-05 FS","SI20SCA4B10,SI20SCA3-26,SI20SCA2-05","SI20SCA4-25 FS","SI20SCA4-25",103,,103,,24,,24,,75,288,"HK1003 -Blackpoint D2 - Rev.0E DD30092021"
1-1464,SI20UEY2-70,"DETAIL DESIGN CONCRETE STRUCTURE 20UEY03-05",5121,"HK1003-Rev.0E-3",TT_Task,"55902",-,-,-,90,TK_Active,02/07/2021,02/07/2021,09/10/2021,,"SI20UEY2-77 FS,SI20UEY2-60 FS","SI20UEY2-77,SI20UEY2-60","SI20UEY2-50 FF,SI20UEY2-75 FS,SI20UEY2-52 FS","SI20UEY2-50,SI20UEY2-75,SI20UEY2-52",47,47,62,,11,11,14,,20,1048,"HK1003 -Blackpoint D2 - Rev.0E DD30092021"
1-1465,SI20UEY2-75,"(F) CONCRETE STRUCTURE DWGS ON SITE RELEASED FOR EXECUTION 20UEY03-05",5121,"HK1003-Rev.0E-3",TT_FinMile,"55902",-,-,-,0,TK_NotStart,05/01/2022,,05/01/2022,,"SI20UEY2-70 FS,SI20UEY2-50 FS,SI20UEY2-62 FS","SI20UEY2-70,SI20UEY2-50,SI20UEY2-62","SI20UEY5-10 SS,SI20UEY5-06 FS","SI20UEY5-10,SI20UEY5-06",74,,74,,17,,17,,44,1048,"HK1003 -Blackpoint D2 - Rev.0E DD30092021"
1-1466,SI20GKB6H16,"ERECTION / PT PIPES 00GKB FOR UGD TO UMC",5121,"HK1003-Rev.0E-3",TT_Task,"55902",-,-,-,0,TK_NotStart,26/11/2022,,27/01/2023,,"SI20MB-6A15 FF,SI---5P6A09 FS,SI-P222-104 FS,SI-P222-106 FS,SI-P222-107 FS","SI20MB-6A15,SI---5P6A09,SI-P222-104,SI-P222-106,SI-P222-107","SI20GKB6H15 FF,SI20GKB8A10 FS,SI20TPM5A6-20 SS,SI20TPM5B6-20 SS,SI20TPM5B6-25 SS","SI20GKB6H15,SI20GKB8A10,SI20TPM5A6-20,SI20TPM5B6-20,SI20TPM5B6-25",121,,129,,28,,30,,85,944,"HK1003 -Blackpoint D2 - Rev.0E DD30092021"
1-1467,SI20MB-9-20,"FULL SPEED NO LOAD GT20",5121,"HK1003-Rev.0E-3",TT_Task,"55902",-,-,-,0,TK_NotStart,01/07/2023,,01/07/2023,,"SI20MB-9-15 FS","SI20MB-9-15","SI20MKA9-35 SS","SI20MKA9-35",152,,152,,35,,35,,99,0,"HK1003 -Blackpoint D2 - Rev.0E DD30092021"
1-1468,SI20MBR4-25,"TRANSPORT DIFFUSOR 20MBR",5121,"HK1003-Rev.0E-3",TT_Task,"55902",-,-,-,0,TK_NotStart,23/03/2022,,21/04/2022,,"SP20MBR3A80 FS","SP20MBR3A80","SI20MBR4-40 FS","SI20MBR4-40",85,,89,,19,,20,,53,632,"HK1003 -Blackpoint D2 - Rev.0E DD30092021"
1-1469,SI20SGC8-75,"LIVE SPRAY DELUGE TEST AND EVALUATION OF TEST FOR BAT/ BBT 20SGC",5121,"HK1003-Rev.0E-3",TT_Task,"55902",-,-,-,0,TK_NotStart,25/03/2023,,27/03/2023,,"SI20SGC8-65 FS,SI20GM-8B25 FF,SI20TPF1A8-30 FS,SI20TPF1A8-30 FF,SI20TPF2A8-30 FS,SI20TPF1C8-30 FS,SI20TPF1B8-30 FS","SI20SGC8-65,SI20GM-8B25,SI20TPF1A8-30,SI20TPF1A8-30,SI20TPF2A8-30,SI20TPF1C8-30,SI20TPF1B8-30","SI20CH-8A25 FS","SI20CH-8A25",138,,138,,32,,32,,93,16,"HK1003 -Blackpoint D2 - Rev.0E DD30092021"
1-1470,SI20CHY4-10,"TRANSPORT TO WORKSHOP PROT./ SYNCHR./METERING 20CHA/CHY (TO ST. INGBERT-INSTALL INTO ELECTRICAL MODULES)",5121,"HK1003-Rev.0E-3",TT_Task,"55902",-,-,-,0,TK_NotStart,15/02/2022,,16/02/2022,,"SI20CHY3-25 FS","SI20CHY3-25","SI20UBA4-50 FS","SI20UBA4-50",80,,80,,18,,18,,49,592,"HK1003 -Blackpoint D2 - Rev.0E DD30092021"
1-1471,SI20MKQ6-15,"ERECTION EXHAUST GAS SYSTEM FOR GENERATOR 20MKQ",5121,"HK1003-Rev.0E-3",TT_Task,"55902",-,-,-,0,TK_NotStart,28/08/2022,,10/09/2022,,"SI20MKQ4-40 FS,SI20MKW6-15 FS","SI20MKQ4-40,SI20MKW6-15","SI20MKQ8-25 FS,SI20MKQ6A15 FS,SI20MKG6-15 FS","SI20MKQ8-25,SI20MKQ6A15,SI20MKG6-15",108,,110,,25,,25,,79,904,"HK1003 -Blackpoint D2 - Rev.0E DD30092021"
1-1472,SI--HB-2-15,"BASIC DESIGN MAIN STEEL STRUCTURE HRSG (Main Frame)",5121,"HK1003-Rev.0E-3",TT_Task,"55902",-,-,-,100,TK_Complete,05/11/2020,05/11/2020,30/12/2020,30/12/2020,"SI--HB-2A05 FS,SI--HA-2-10 FF","SI--HB-2A05,SI--HA-2-10","SI--HB-2A40 FS,SI20HB-3C25 FS,SI--HB-3-25 FS,SI20HB-3A25 SS","SI--HB-2A40,SI20HB-3C25,SI--HB-3-25,SI20HB-3A25",13,13,21,21,3,3,5,5,0,,"HK1003 -Blackpoint D2 - Rev.0E DD30092021"
1-1473,SI20XKA2-15,"BASIC DESIGN / SPECIFICATION EMERGENCY DIESEL GEN.SET XKA",5121,"HK1003-Rev.0E-3",TT_Task,"55902",-,-,-,100,TK_Complete,01/09/2021,22/08/2021,02/10/2021,31/08/2021,"SI--3331-32 FS,SI--3332-26 FS,SI-----1-03 SS,SI--B--2A50 FS,SI-----1-05 FS,SI--B--2A55 FS","SI--3331-32,SI--3332-26,SI-----1-03,SI--B--2A50,SI-----1-05,SI--B--2A55","SI20XKA2-75 FS,SI20UBN2-106 SS","SI20XKA2-75,SI20UBN2-106",56,55,61,56,13,12,14,13,28,,"HK1003 -Blackpoint D2 - Rev.0E DD30092021"
1-1474,SI--PAD4-40,"(OTD-OS) ON SITE: PARTS EMB. INTO RISERES 20PAD",5121,"HK1003-Rev.0E-3",TT_FinMile,"55902",-,-,-,0,TK_NotStart,28/10/2021,,28/10/2021,,"SI--PAD4-25 FS","SI--PAD4-25","SI20URA5-17.08 FS","SI20URA5-17.08",64,,64,,15,,15,,36,560,"HK1003 -Blackpoint D2 - Rev.0E DD30092021"
1-1475,SI20HB-3D80,"(RFS) READY FOR SHIPMENT STACK / SILENCER & DAMPER HRSG 20 (incl. Platforms)",5121,"HK1003-Rev.0E-3",TT_FinMile,"55902",-,-,-,0,TK_NotStart,07/02/2022,,07/02/2022,,"SI20HB-4B14 FS","SI20HB-4B14","SI20HB-4D25 FS","SI20HB-4D25",79,,79,,18,,18,,48,376,"HK1003 -Blackpoint D2 - Rev.0E DD30092021"
1-1476,SI20MA-8-25,"COLD COMMISSIONING LP-TURBINE 20MAB",5121,"HK1003-Rev.0E-3",TT_Task,"55902",-,-,-,0,TK_NotStart,18/04/2023,,19/06/2023,,"SI20MAN8-10 FS,SI20CPB8-25 FS,SI20BFG8-50 FS,SI20MAJ8-10 FS,SI20MAG8-10 FS,SI20MA-8-10 FS,SI20MAL8-10 FS,SI20MAX8-10 FS,SI20MA-6-66 FS,SI-PM-40 FS,SI20B--8-50 FS","SI20MAN8-10,SI20CPB8-25,SI20BFG8-50,SI20MAJ8-10,SI20MAG8-10,SI20MA-8-10,SI20MAL8-10,SI20MAX8-10,SI20MA-6-66,SI-PM-40,SI20B--8-50","SI20MAW8-25 FF,SI20MA-9-05 FS,SI20M--8-67 FS,SI20MAY9-35 FS,SI20MA-8-25# SS,SI20QFB8-25 SS,SI20MAD8-25 SS,SI20MAG8-25 SS,SI20MAN8-25 SS,SI20MAV8-25 SS,SI20MAX8-25 SS,SI20MAL8-25 SS","SI20MAW8-25,SI20MA-9-05,SI20M--8-67,SI20MAY9-35,SI20MA-8-25#,SI20QFB8-25,SI20MAD8-25,SI20MAG8-25,SI20MAN8-25,SI20MAV8-25,SI20MAX8-25,SI20MAL8-25",141,,150,,33,,35,,95,32,"HK1003 -Blackpoint D2 - Rev.0E DD30092021"
1-1477,SI20MA-4-40,"(OTD-OS) ON SITE STEAM TURBINE (HI-L)",5121,"HK1003-Rev.0E-3",TT_FinMile,"55902",-,-,-,0,TK_NotStart,30/07/2022,,30/07/2022,,"SI20MA-4-25 FS","SI20MA-4-25","SI20MA-6C11 FS,SI20MA-6B16 FS,SI20MA-6A10 FS,SI20MA-6C00 FS","SI20MA-6C11,SI20MA-6B16,SI20MA-6A10,SI20MA-6C00",104,,104,,24,,24,,76,96,"HK1003 -Blackpoint D2 - Rev.0E DD30092021"
1-1478,SI20MBA9-25,"AIR DISTRIBUTION TEST 20MKA",5121,"HK1003-Rev.0E-3",TT_Task,"55902",-,-,-,0,TK_NotStart,01/07/2023,,01/07/2023,,"SI20MB-9-15 FS","SI20MB-9-15","SI20MKA9-42 FS","SI20MKA9-42",152,,152,,35,,35,,99,8,"HK1003 -Blackpoint D2 - Rev.0E DD30092021"
1-1479,SI20UBA4-51,"(ET4b) ELECTRICAL MODULES AT WORKSHOP READY FOR COMPONENT INSTALLATION ELECTRICAL MODULES 20UBA7310/30",5121,"HK1003-Rev.0E-3",TT_Mile,"55902",-,-,-,0,TK_NotStart,18/11/2021,,18/11/2021,,"SI20UBA3H25 FS,SI20CJ-4-11 FS","SI20UBA3H25,SI20CJ-4-11","SI20UBA3H55 FS","SI20UBA3H55",67,,67,,15,,15,,38,592,"HK1003 -Blackpoint D2 - Rev.0E DD30092021"
1-1480,SI20QC-2-80,"QUOTATION STAGE DOSING CONTAINER QC",5121,"HK1003-Rev.0E-3",TT_Task,"55902",-,-,-,100,TK_Complete,30/04/2021,30/04/2021,30/07/2021,30/07/2021,"SI20QC-2-75 FS,SI--3332-76 FS","SI20QC-2-75,SI--3332-76","SI20QC-2-85 FS,SI20QC-2-65 FS","SI20QC-2-85,SI20QC-2-65",38,38,51,51,9,9,12,12,10,,"HK1003 -Blackpoint D2 - Rev.0E DD30092021"
1-1481,SP--CJJ2-37,"ST I&C TEST DOCUMENTS AT TEST FIELD",5121,"HK1003-Rev.0E-3",TT_FinMile,"55902",-,-,-,0,TK_NotStart,10/12/2021,,10/12/2021,,"SP--CJJ3-25 FS","SP--CJJ3-25","SI20UBA4-63 FS","SI20UBA4-63",70,,70,,16,,16,,42,1024,"HK1003 -Blackpoint D2 - Rev.0E DD30092021"
1-1482,SI20MBA8E25,"COLD COMMISSIONING GT20 BLOW OFF SYSTEM MBA4x",5121,"HK1003-Rev.0E-3",TT_Task,"55902",-,-,-,0,TK_NotStart,23/06/2023,,29/06/2023,,"SI20MBA8A10 FS,SI20MBA8-25 FS,SI-PM-40 FS,SI20B--8-50 FS,SI20B--8-52 FS,SI20SCA8-17 SS,SI20PGB8B25 FS","SI20MBA8A10,SI20MBA8-25,SI-PM-40,SI20B--8-50,SI20B--8-52,SI20SCA8-17,SI20PGB8B25","SI20MB-9-15 FS,SI20MB-8-25# SS","SI20MB-9-15,SI20MB-8-25#",150,,151,,35,,35,,99,8,"HK1003 -Blackpoint D2 - Rev.0E DD30092021"
1-1483,SI--CKA7-15,"ERECTION THERMODYNAMIC SERVER",5121,"HK1003-Rev.0E-3",TT_Task,"55902",-,-,-,0,TK_NotStart,02/04/2023,,08/04/2023,,"SI--CKA4-25 FS,SI--CKA2-16 FS","SI--CKA4-25,SI--CKA2-16","SI--CKA2-08 FS","SI--CKA2-08",139,,140,,32,,32,,94,408,"HK1003 -Blackpoint D2 - Rev.0E DD30092021"
1-1484,SI20PAA8-20,"COLD COMMISSIONING COOLING TOWER COARSE SCREEN AND STOPLOGS 20PAA",5121,"HK1003-Rev.0E-3",TT_Task,"55902",-,-,-,0,TK_NotStart,15/04/2023,,28/04/2023,,"SI20PAB8-05 FS,SI20CPC8-27 FS,SI20PAA6-15 FS,SI20PAC6-06 FS,SI-PM-40 FS","SI20PAB8-05,SI20CPC8-27,SI20PAA6-15,SI20PAC6-06,SI-PM-40","SI20PAD8-55 FS,SI20MA-9-05 FS","SI20PAD8-55,SI20MA-9-05",141,,142,,32,,33,,95,184,"HK1003 -Blackpoint D2 - Rev.0E DD30092021"
1-1485,SI20MB-6-04,"TEMP. LIFTING OIL SYSTEM AVAILABLE FOR ALIGNMENT GT20/GEN20",5121,"HK1003-Rev.0E-3",TT_Mile,"55902",-,-,-,0,TK_NotStart,06/08/2022,,06/08/2022,,"SI20MB-6-10 SS","SI20MB-6-10","SI20MBA6-35 FS","SI20MBA6-35",105,,105,,24,,24,,77,320,"HK1003 -Blackpoint D2 - Rev.0E DD30092021"
1-1486,SI20QFB6H15,"ERECTION, NDT, PT / VALVES ST CONTROL AIR 20QFB",5121,"HK1003-Rev.0E-3",TT_Task,"55902",-,-,-,0,TK_NotStart,05/10/2022,,29/11/2022,,"SI20SCA6-40 FS,SI---5P6A09 FS","SI20SCA6-40,SI---5P6A09","SI20QFB7H15 FS,SI20QFB8-10 FS,SI20-6-16# FF,SI20-6-16# SS","SI20QFB7H15,SI20QFB8-10,SI20-6-16#,SI20-6-16#",113,,121,,26,,28,,82,1480,"HK1003 -Blackpoint D2 - Rev.0E DD30092021"
1-1487,SI20MAL6A45,"INSULATION PIPES / VALVES FOR STEAM SYSTEM MAL",5121,"HK1003-Rev.0E-3",TT_Task,"55902",-,-,-,0,TK_NotStart,13/11/2022,,17/12/2022,,"SI20MAL6A15 FS,SI-P2I-15 FS","SI20MAL6A15,SI-P2I-15","SI20MAL8-10 FS,SI20MAL7A15 FF,SI20---6A15# FF","SI20MAL8-10,SI20MAL7A15,SI20---6A15#",119,,124,,27,,28,,85,1000,"HK1003 -Blackpoint D2 - Rev.0E DD30092021"
1-1488,SI20MAL6A15,"ERECTION, NDT, PT PIPES / VALVES MAL",5121,"HK1003-Rev.0E-3",TT_Task,"55902",-,-,-,0,TK_NotStart,02/10/2022,,12/11/2022,,"SI20MA-6-65 FS,SI20MAJ6-40 FS,SI20MAG6M10 FS,SI20MAL6M10 FS,SI20MAJ6A15 FF,SI---1P6A05 FS","SI20MA-6-65,SI20MAJ6-40,SI20MAG6M10,SI20MAL6M10,SI20MAJ6A15,SI---1P6A05","SI20MAL8-10 FS,SI20MAW6H15 FF,SI20MAL6A45 FS,SI20-6-16# FF,SI20-6-16# SS","SI20MAL8-10,SI20MAW6H15,SI20MAL6A45,SI20-6-16#,SI20-6-16#",113,,119,,26,,27,,82,1000,"HK1003 -Blackpoint D2 - Rev.0E DD30092021"
1-1489,SI20UTG5-16,"(RFE) FOUNDATION 20UTG01",5121,"HK1003-Rev.0E-3",TT_FinMile,"55902",-,-,-,0,TK_NotStart,15/05/2022,,15/05/2022,,"SI20UTG5-14 FS","SI20UTG5-14","SI20QJ-6B42 FS,SI20UTG2S-30 FS","SI20QJ-6B42,SI20UTG2S-30",93,,93,,21,,21,,65,2600,"HK1003 -Blackpoint D2 - Rev.0E DD30092021"
1-1490,SI20UTG5-14,"CONSTRUCTION FOUNDATION 20UTG01",5121,"HK1003-Rev.0E-3",TT_Task,"55902",-,-,-,0,TK_NotStart,02/05/2022,,15/05/2022,,"SI20UTG5-12 FS","SI20UTG5-12","SI20UTG5-16 FS","SI20UTG5-16",91,,93,,21,,21,,61,2600,"HK1003 -Blackpoint D2 - Rev.0E DD30092021"
1-1491,SP--MB-2A81,"QUOTATION STAGE INTERCONNECTING PIPING MB-",5121,"HK1003-Rev.0E-3",TT_Task,"55902",-,-,-,14,TK_Active,25/09/2021,25/09/2021,29/10/2021,,"SP--MB-2A80 FS,SI-----1-04 SS","SP--MB-2A80,SI-----1-04","SP--MB-2A85 FS","SP--MB-2A85",60,60,64,,14,14,15,,30,376,"HK1003 -Blackpoint D2 - Rev.0E DD30092021"
1-1492,SP--MB-2A80,"PREPARE TEC RFQ DOC INTERCONNECTING PIPING",5121,"HK1003-Rev.0E-3",TT_Task,"55902",-,-,-,100,TK_Complete,28/08/2021,28/08/2021,24/09/2021,24/09/2021,"SI-----1-04 SS,SP--MB-2C05 FS,SI--3331-35 FS,SP--MB-2-86 FS","SI-----1-04,SP--MB-2C05,SI--3331-35,SP--MB-2-86","SP--MB-2A81 FS","SP--MB-2A81",56,56,59,59,13,13,13,13,27,,"HK1003 -Blackpoint D2 - Rev.0E DD30092021"
1-1493,SP--MBK2-85,"CONTRACT INTO FORCE TURNING DEVICE MBK",5121,"HK1003-Rev.0E-3",TT_Mile,"55902",-,-,-,0,TK_NotStart,23/10/2021,,23/10/2021,,"SP--MBK2-81 FS,SI--3332-76 SS","SP--MBK2-81,SI--3332-76","SP20MB-2-85 FS,SP20MBK3-25 FS","SP20MB-2-85,SP20MBK3-25",64,,64,,14,,14,,35,504,"HK1003 -Blackpoint D2 - Rev.0E DD30092021"
1-1494,SP--MBK2-81,"QUOTATION STAGE TURNING DEVICE MBK",5121,"HK1003-Rev.0E-3",TT_Task,"55902",-,-,-,45,TK_Active,11/09/2021,11/09/2021,22/10/2021,,"SP--MBK2-80 FS,SI-----1-04 SS","SP--MBK2-80,SI-----1-04","SP--MBK2-85 FS","SP--MBK2-85",58,58,63,,13,13,14,,29,504,"HK1003 -Blackpoint D2 - Rev.0E DD30092021"
1-1495,SI20MA-5-27,"GROUTING OF STEEL BARS FOR LP1 CENTERING GUIDE MA",5121,"HK1003-Rev.0E-3",TT_Task,"55902",-,-,-,0,TK_NotStart,23/07/2022,,30/07/2022,,"SI20MA-6-12 SS","SI20MA-6-12","SI20MA-6B02 FF,SI20MA-6B16 FS,SI20MA-6A10 FS,SI20MA-6A17# FF,SI20MA-6B83 FS","SI20MA-6B02,SI20MA-6B16,SI20MA-6A10,SI20MA-6A17#,SI20MA-6B83",103,,104,,24,,24,,74,32,"HK1003 -Blackpoint D2 - Rev.0E DD30092021"
1-1496,SI20MA-6-12,"INSTALL. AND PREALIGNMENT OF STEEL BARS FOR LP1 CENTERING GUIDE MA",5121,"HK1003-Rev.0E-3",TT_Task,"55902",-,-,-,0,TK_NotStart,15/07/2022,,24/07/2022,,"SI20MA-6-35 FS","SI20MA-6-35","SI20MA-6B02 FS,SI20MA-5-27 SS,SI20MA-6A17# FF,SI20MA-6B83 FS","SI20MA-6B02,SI20MA-5-27,SI20MA-6A17#,SI20MA-6B83",101,,103,,23,,24,,73,24,"HK1003 -Blackpoint D2 - Rev.0E DD30092021"
1-1497,SI20EK-7-25,"E- AND I&C-ERECTION 20UEN",5121,"HK1003-Rev.0E-3",TT_Task,"55902",-,-,-,0,TK_NotStart,12/02/2023,,25/02/2023,,"SI20BZK7F25 FF,SI20EK-6-15 FF","SI20BZK7F25,SI20EK-6-15","SI20EK-7-95 FS,SI20EK-8H14 FS,SI20EK-8H13 FS,SI20BZK7D10# FF,SI20BZK7D10# SS,SI20BZK7D11# FF,SI20BZK7D11# SS,SI20BZL7C16 FS","SI20EK-7-95,SI20EK-8H14,SI20EK-8H13,SI20BZK7D10#,SI20BZK7D10#,SI20BZK7D11#,SI20BZK7D11#,SI20BZL7C16",132,,134,,30,,31,,90,32,"HK1003 -Blackpoint D2 - Rev.0E DD30092021"
1-1498,SI20GHC6H17,"ERECTION, NDT, PT / VALVES DEMIN WATER GHC COMMON HEADER",5121,"HK1003-Rev.0E-3",TT_Task,"55902",-,-,-,0,TK_NotStart,15/07/2022,,11/08/2022,,"SI---1P6A05 FS,SI20BZP7D19 FS","SI---1P6A05,SI20BZP7D19","SI20GHC8H25 FS,SI20GHC7H17 FS,SI20-6-16# FF,SI20-6-16# SS,SI20GHC6H15 FS","SI20GHC8H25,SI20GHC7H17,SI20-6-16#,SI20-6-16#,SI20GHC6H15",101,,105,,23,,24,,73,1512,"HK1003 -Blackpoint D2 - Rev.0E DD30092021"
1-1499,SI20HB-3C25,"MANUFACTURING SECONDARY STEEL STRUCTURE HRSG20_1st Part",5121,"HK1003-Rev.0E-3",TT_Task,"55902",-,-,-,65,TK_Active,06/06/2021,06/06/2021,30/11/2021,,"SI--HB-3C15 SS,SI--HB-2-15 FS,SI--HB-2-19 FF","SI--HB-3C15,SI--HB-2-15,SI--HB-2-19","SI20HB-3C91 SS,SI20HB-3B71 FS","SI20HB-3C91,SI20HB-3B71",44,44,69,,10,10,16,,16,640,"HK1003 -Blackpoint D2 - Rev.0E DD30092021"
1-1500,SP20MAJ3-80,"(RFS) READY FOR SHIPMENT AIR REMOVAL SYSTEM 20MAJ",5121,"HK1003-Rev.0E-3",TT_FinMile,"55902",-,-,-,0,TK_NotStart,14/03/2022,,14/03/2022,,"SP20MAJ4-10 FS","SP20MAJ4-10","SI20MAJ4-25 FS","SI20MAJ4-25",84,,84,,19,,19,,52,1184,"HK1003 -Blackpoint D2 - Rev.0E DD30092021"
1-1501,SI20UMC2B-15,"CONTRACT INTO FORCE FOR EMBEDDED PARTS UMC",5121,"HK1003-Rev.0E-3",TT_FinMile,"55902",-,-,-,100,TK_Complete,30/03/2021,30/03/2021,30/03/2021,30/03/2021,"SI20UMC2B-20 FS,SI20UMC2B-10 FS","SI20UMC2B-20,SI20UMC2B-10","SI20UHA2B-9 FS,SI20UMC2B-25 FS","SI20UHA2B-9,SI20UMC2B-25",34,34,34,34,8,8,8,8,7,,"HK1003 -Blackpoint D2 - Rev.0E DD30092021"
1-1502,SI20UMC2B-10,"QUOTATION FOR EMBEDDED PARTS UMC",5121,"HK1003-Rev.0E-3",TT_Task,"55902",-,-,-,100,TK_Complete,24/02/2021,24/02/2021,30/03/2021,30/03/2021,"SI20UMC2B-5 FS","SI20UMC2B-5","SI20UMC2B-15 FS","SI20UMC2B-15",29,29,34,34,6,6,8,8,5,,"HK1003 -Blackpoint D2 - Rev.0E DD30092021"
1-1503,SI20UMC2B-5,"RFQ FOR EMBEDDED PARTS UMC",5121,"HK1003-Rev.0E-3",TT_Task,"55902",-,-,-,100,TK_Complete,27/01/2021,27/01/2021,23/02/2021,23/02/2021,"SI-----1-03 FS,SI--HA-2-85 FS,SP--MB-2-85 FS","SI-----1-03,SI--HA-2-85,SP--MB-2-85","SI20UMC2B-10 FS","SI20UMC2B-10",25,25,29,29,5,5,6,6,3,,"HK1003 -Blackpoint D2 - Rev.0E DD30092021"
1-1504,SI20UBA3B-25,"FABRICATION DESIGN FABRICATION TRANSPORT STEEL STRUCTURE 20UBA1110/20",5121,"HK1003-Rev.0E-3",TT_Task,"55902",-,-,-,0,TK_NotStart,05/09/2022,,27/11/2022,,"SI20UBA2B-20 FF,SI20UBA2B-20 FS,SI20UBA2B-10 FS,SI--HA-2-85 FS","SI20UBA2B-20,SI20UBA2B-20,SI20UBA2B-10,SI--HA-2-85","SI20UBA5B-40 FS","SI20UBA5B-40",109,,121,,25,,28,,80,288,"HK1003 -Blackpoint D2 - Rev.0E DD30092021"
1-1505,SI20SMG4-25,"TRANSPORT OTHER CRANES AND HOIST",5121,"HK1003-Rev.0E-3",TT_Task,"55902",-,-,-,0,TK_NotStart,28/04/2022,,22/06/2022,,"SI20SMG3-80 FS","SI20SMG3-80","SI20SMG4-40 FS","SI20SMG4-40",90,,98,,21,,23,,59,2424,"HK1003 -Blackpoint D2 - Rev.0E DD30092021"
1-1506,SI20SMG3-25,"FABRICATION DESIGN/ MANUFACTURING / SHOP TEST OTHER CRANES AND HOIST",5121,"HK1003-Rev.0E-3",TT_Task,"55902",-,-,-,0,TK_NotStart,11/11/2021,,30/03/2022,,"SI20SMG2-85 FS","SI20SMG2-85","SI20SMG3-70 FS","SI20SMG3-70",66,,86,,15,,20,,38,2424,"HK1003 -Blackpoint D2 - Rev.0E DD30092021"
1-1507,SI20SMG6-19,"ERECTION & ACCEPTANCE TEST CRANE FOR HOIST",5121,"HK1003-Rev.0E-3",TT_Task,"55902",-,-,-,0,TK_NotStart,07/07/2022,,31/08/2022,,"SI20SMG4-40 FS","SI20SMG4-40","SI20MB-9-15 FS","SI20MB-9-15",100,,108,,23,,25,,72,2424,"HK1003 -Blackpoint D2 - Rev.0E DD30092021"
1-1508,SI20SMG2-75,"CONTRACT REVIEW / PREP. RFQ OTHER CRANES AND HOIST",5121,"HK1003-Rev.0E-3",TT_Task,"55902",-,-,-,100,TK_Complete,01/09/2021,01/09/2021,29/09/2021,29/09/2021,"SI--3331-32 FS,SI-----1-03 FS,SI20SMG2-87 FS","SI--3331-32,SI-----1-03,SI20SMG2-87","SI20SMG2-80 FS,SI20SMG2-85 FS","SI20SMG2-80,SI20SMG2-85",56,56,60,60,13,13,14,14,28,,"HK1003 -Blackpoint D2 - Rev.0E DD30092021"
1-1509,SI20HA-6C26,"FINALISATION OF ERECTION HRSG MODULES20",5121,"HK1003-Rev.0E-3",TT_FinMile,"55902",-,-,-,0,TK_NotStart,05/05/2022,,05/05/2022,,"SI20HA-6C22 FS","SI20HA-6C22","SI20HA-6-56 FS","SI20HA-6-56",91,,91,,21,,21,,63,2528,"HK1003 -Blackpoint D2 - Rev.0E DD30092021"
1-1510,SI20BZP7-110,"ERECTION CABLE TRAYS 20UMC ST AREA",5121,"HK1003-Rev.0E-3",TT_Task,"55902",-,-,-,0,TK_NotStart,02/10/2022,,11/10/2022,,"SI--PEE7-20 FS,SI--2227-68 FS,SI--BZP2-05 FS,SI20MKA6-18 FS,SI20MA-6-50 FS,SI--BZP4B40 FS,SI20UMC5C55 FS,SI20BZP7-26 FS,SI--PEE7-20 SS,SI20MA-6-50 SS,SI20UMC5E62 FS,SI20UMC5E56 FS,SI20UMC5E64 FS,SI20UMC5E68 FS,SI20UMC5E72 FS,SI20UMC5E60 FS","SI--PEE7-20,SI--2227-68,SI--BZP2-05,SI20MKA6-18,SI20MA-6-50,SI--BZP4B40,SI20UMC5C55,SI20BZP7-26,SI--PEE7-20,SI20MA-6-50,SI20UMC5E62,SI20UMC5E56,SI20UMC5E64,SI20UMC5E68,SI20UMC5E72,SI20UMC5E60","SI20BZK7E25 FS,SI20BZK7A27 FS,SI20MAJ7B15 SS,SI20C--7L15 SS,SI20BZK7C33 FS,SI20MAX7-15 SS,SI20MAG6-60 SS,SI20MAV7-15 SS,SI20C--7B17 FS,SI20BZK7-28 FS,SI20MAW7-15 SS,SI20BAW5C16 FF,SI20BZP7B10# FF,SI20BZP7B10# SS,SI20CPB8-25 FS,SI20MKA8-10 FS,SI20UMC5D50 FS,SI--2226-55 FS,SI--2222-35 FS,SI20MAD7-15 FS,SI20BZK7C34 FS,SI20BZK7E27 FS,SI20BZK7E26 FS,SI20BZK7E26 FF","SI20BZK7E25,SI20BZK7A27,SI20MAJ7B15,SI20C--7L15,SI20BZK7C33,SI20MAX7-15,SI20MAG6-60,SI20MAV7-15,SI20C--7B17,SI20BZK7-28,SI20MAW7-15,SI20BAW5C16,SI20BZP7B10#,SI20BZP7B10#,SI20CPB8-25,SI20MKA8-10,SI20UMC5D50,SI--2226-55,SI--2222-35,SI20MAD7-15,SI20BZK7C34,SI20BZK7E27,SI20BZK7E26,SI20BZK7E26",113,,114,,26,,26,,82,304,"HK1003 -Blackpoint D2 - Rev.0E DD30092021"
1-1511,SI20BZP7-95,"ERECTION CABLE TRAYS FOR 20 URD AREA",5121,"HK1003-Rev.0E-3",TT_Task,"55902",-,-,-,0,TK_NotStart,04/09/2022,,08/09/2022,,"SI--PEE7-20 FS,SI--2227-68 FS,SI--BZP2-05 FS,SI20PAC6B15 FS,SI--BZP4B40 FS,SI20BZP7-26 FS,SI--PEE7-20 SS","SI--PEE7-20,SI--2227-68,SI--BZP2-05,SI20PAC6B15,SI--BZP4B40,SI20BZP7-26,SI--PEE7-20","SI20PAD8-10 FS,SI--BFT8-10 FS,SI20PAC6-06 FF,SI20BZP7B10# FF,SI20BZP7B10# SS,SI20BAW5C24 FF","SI20PAD8-10,SI--BFT8-10,SI20PAC6-06,SI20BZP7B10#,SI20BZP7B10#,SI20BAW5C24",109,,109,,25,,25,,80,1688,"HK1003 -Blackpoint D2 - Rev.0E DD30092021"
1-1512,SI20C--7B15,"INSTALLATION OF I&C EQUIPMENT & ET200 FOR LATS GT",5121,"HK1003-Rev.0E-3",TT_Task,"55902",-,-,-,0,TK_NotStart,22/10/2022,,18/11/2022,,"SI--PEI7-20 FS,SI--CP-4-25 FS,SI--CP-4-26 FS,SI20MB-6-22 FS,SI20BZP7-140 SS","SI--PEI7-20,SI--CP-4-25,SI--CP-4-26,SI20MB-6-22,SI20BZP7-140","SI20MBA8-10 FS,SI20BZK7L25 SS","SI20MBA8-10,SI20BZK7L25",116,,119,,27,,27,,84,728,"HK1003 -Blackpoint D2 - Rev.0E DD30092021"
1-1513,SI20UPY5P10,"(H) START PLACING FORMWORK 20UPY",5121,"HK1003-Rev.0E-3",TT_Mile,"55902",-,-,-,0,TK_NotStart,09/12/2021,,09/12/2021,,"SI20UMC5B90 SS,SI-----5-21& FS,SI20UPY2-37 FS,SI20UPY2-30 FS,SI20UPY5P05.02 FS","SI20UMC5B90,SI-----5-21&,SI20UPY2-37,SI20UPY2-30,SI20UPY5P05.02","SI20UPY5P15.00 FS","SI20UPY5P15.00",70,,70,,16,,16,,41,2184,"HK1003 -Blackpoint D2 - Rev.0E DD30092021"
1-1514,SI20UMC2D5,"DETAIL DESIGN FINISHING WORKS 20UMC",5121,"HK1003-Rev.0E-3",TT_Task,"55902",-,-,-,0,TK_NotStart,10/11/2021,,04/01/2022,,"SI--UMC2B82 FS,SI--UMC2B86 FS","SI--UMC2B82,SI--UMC2B86","SI20UMC2D25 FS","SI20UMC2D25",66,,74,,15,,17,,37,1728,"HK1003 -Blackpoint D2 - Rev.0E DD30092021"
1-1515,SI20UMC2D25,"(F) FINISHING WORKS DWGS ON SITE RELEASED FOR EXEC. FINISHING WORKS 20UMC",5121,"HK1003-Rev.0E-3",TT_FinMile,"55902",-,-,-,0,TK_NotStart,02/04/2022,,02/04/2022,,"SI20UMC2D5 FS","SI20UMC2D5","SI20UMC3D30 FS","SI20UMC3D30",87,,87,,20,,20,,55,1024,"HK1003 -Blackpoint D2 - Rev.0E DD30092021"
1-1516,SI20SCA7-15,"ELECTRICAL ERECTION COMPRESSED AIR/INSTRUMENT AIR SYSTEM SCA/QFA",5121,"HK1003-Rev.0E-3",TT_Task,"55902",-,-,-,0,TK_NotStart,09/01/2023,,29/01/2023,,"SI20BZK7E25 FS,SI20SCA6-15 FS","SI20BZK7E25,SI20SCA6-15","SI20SCA8-16 FS,SI20BZK7D11# FF,SI20BZK7D11# SS","SI20SCA8-16,SI20BZK7D11#,SI20BZK7D11#",127,,130,,29,,30,,88,992,"HK1003 -Blackpoint D2 - Rev.0E DD30092021"
1-1517,SI--BAA2-15,"BASIC DESIGN / SPECIFICATION IPB BAA",5121,"HK1003-Rev.0E-3",TT_Task,"55902",-,-,-,100,TK_Complete,15/01/2021,15/01/2021,18/03/2021,18/03/2021,"SI--3332-27 SS,SI--3331-32 FS,SI-----1-05 FS","SI--3332-27,SI--3331-32,SI-----1-05","SI--BAA2-75 FS","SI--BAA2-75",23,23,32,32,5,5,7,7,2,,"HK1003 -Blackpoint D2 - Rev.0E DD30092021"
1-1518,SI--BAW7-55,"EARTHING MEASUREMENT",5121,"HK1003-Rev.0E-3",TT_Task,"55902",-,-,-,100,TK_Complete,10/05/2021,10/05/2021,18/06/2021,18/06/2021,"SI20UBF5D45 FS,SI20BAW5A18 FS,SI20BAW5C23 FS,SI20BAW5B15 FS,SI20BAW5C16 FS,SI20BAW5C24 FS","SI20UBF5D45,SI20BAW5A18,SI20BAW5C23,SI20BAW5B15,SI20BAW5C16,SI20BAW5C24","SI--BAW8A10 FS","SI--BAW8A10",40,40,45,45,9,9,10,10,12,,"HK1003 -Blackpoint D2 - Rev.0E DD30092021"
1-1519,SI20LCL2B60,"(DF) INPUT FOR MS3 BOILER BLOWDOWN PUMP LCL",5121,"HK1003-Rev.0E-3",TT_FinMile,"55902",-,-,-,100,TK_Complete,09/05/2021,09/05/2021,09/05/2021,09/05/2021,"SI20LCL2B85 SS,SI-----1-01 SS","SI20LCL2B85,SI-----1-01","SI--UHA2-60 FS","SI--UHA2-60",40,40,40,40,9,9,9,9,11,,"HK1003 -Blackpoint D2 - Rev.0E DD30092021"
1-1520,SI20LCL2B75,"CONTRACT REVIEW / PREP. RFQ BOILER BLOWDOWN PUMP LCL",5121,"HK1003-Rev.0E-3",TT_Task,"55902",-,-,-,100,TK_Complete,15/01/2021,15/01/2021,22/02/2021,22/02/2021,"SI20LCL2B86 FF,SI--3331-32 FS,SI--HA-2A86 FS,SI--G--2-20 FS,SI-----1-03 SS,SI-----1-05 FS","SI20LCL2B86,SI--3331-32,SI--HA-2A86,SI--G--2-20,SI-----1-03,SI-----1-05","SI20LCL2B87 FS,SI20LCL2B80 FS","SI20LCL2B87,SI20LCL2B80",23,23,29,29,5,5,6,6,2,,"HK1003 -Blackpoint D2 - Rev.0E DD30092021"
1-1521,SI20PAS3B25,"DETAIL DESIGN, MANUFACTURING, SHOP TEST CT MAKE-UP WATER PUMP PAS",5121,"HK1003-Rev.0E-3",TT_Task,"55902",-,-,-,63,TK_Active,15/06/2021,15/06/2021,30/11/2021,,"SI20PAS2A85 FS","SI20PAS2A85","SI20PAS3B70 FS","SI20PAS3B70",45,45,69,,10,10,16,,17,2480,"HK1003 -Blackpoint D2 - Rev.0E DD30092021"
1-1522,SI--BFT2-60,"(DF) INPUT FOR MS3 LV-TRANSFORMERS BFT",5121,"HK1003-Rev.0E-3",TT_FinMile,"55902",-,-,-,100,TK_Complete,29/07/2021,29/07/2021,29/07/2021,29/07/2021,"SI-----1-01 SS,SI--BFT2-15 FS","SI-----1-01,SI--BFT2-15","SI20UBD2-05 FS,SI20UBD2E60 FS","SI20UBD2-05,SI20UBD2E60",51,51,51,51,12,12,12,12,23,,"HK1003 -Blackpoint D2 - Rev.0E DD30092021"
1-1523,SP20MA-3-80,"(RFS-FAS) READY FOR SHIPMENT STEAM TURBINE (HI-L)",5121,"HK1003-Rev.0E-3",TT_Mile,"55902",-,-,-,0,TK_NotStart,07/05/2022,,07/05/2022,,"SP20MA-4-10 FS","SP20MA-4-10","SI20MA-4-25 FS,SP20MAN3-80 SS","SI20MA-4-25,SP20MAN3-80",92,,92,,21,,21,,63,96,"HK1003 -Blackpoint D2 - Rev.0E DD30092021"
1-1524,SI20USX5-15,"CONSTRUCTION FOUNDATION 20USX",5121,"HK1003-Rev.0E-3",TT_Task,"55902",-,-,-,0,TK_NotStart,16/07/2022,,29/07/2022,,"SI20USX5-20 FS","SI20USX5-20","SI20USX5-25 FS","SI20USX5-25",102,,103,,23,,24,,73,1696,"HK1003 -Blackpoint D2 - Rev.0E DD30092021"
1-1525,SI20CPC8A10,"(TOP-20CP-HR) INTERFACE PANELS IN FUNCTION AREA 20 HRSG",5121,"HK1003-Rev.0E-3",TT_FinMile,"55902",-,-,-,0,TK_NotStart,10/04/2023,,10/04/2023,,"SI--9998-20& SS,SI20UBA7L15 FS","SI--9998-20&,SI20UBA7L15","SI20CPC8-25 FS","SI20CPC8-25",140,,140,,32,,32,,94,32,"HK1003 -Blackpoint D2 - Rev.0E DD30092021"
1-1526,SI20UMC5C10,"(HC) START ERECTION CLADDING  STEEL20UMC",5121,"HK1003-Rev.0E-3",TT_Mile,"55902",-,-,-,0,TK_NotStart,28/03/2022,,28/03/2022,,"SI20UMC3B26 FS,SI20UMC5B15 FS,SI--UMC2B91 FS","SI20UMC3B26,SI20UMC5B15,SI--UMC2B91","SI20UMC5C15 FS,SI20UMC5C56 FS,SI20UBX5C10 FS","SI20UMC5C15,SI20UMC5C56,SI20UBX5C10",86,,86,,20,,20,,54,24,"HK1003 -Blackpoint D2 - Rev.0E DD30092021"
1-1527,SI--LDK2B85,"CONTRACT INTO FORCE CONDENSATE POLISHING PLANT 20LD",5121,"HK1003-Rev.0E-3",TT_Mile,"55902",-,-,-,100,TK_Complete,19/05/2021,19/05/2021,19/05/2021,19/05/2021,"SI--LDK2B80 FS,SI-----2E91 FS","SI--LDK2B80,SI-----2E91","SI20LD-3-25 FS,SI20LDK3B32 FS,SI--LDK2B88 FS,SI--LD-2A63 FS,SI--LD-2-65 FS","SI20LD-3-25,SI20LDK3B32,SI--LDK2B88,SI--LD-2A63,SI--LD-2-65",41,41,41,41,9,9,9,9,13,,"HK1003 -Blackpoint D2 - Rev.0E DD30092021"
1-1528,SI--LDK2B80,"QUOTATION STAGE CONDENSATE POLISHING PLANT 20LD",5121,"HK1003-Rev.0E-3",TT_Task,"55902",-,-,-,100,TK_Complete,19/03/2021,19/03/2021,18/05/2021,18/05/2021,"SI--LD-2-87 FS,SI--LDK2B05 FS","SI--LD-2-87,SI--LDK2B05","SI20LD-3-25 FS,SI--LDK2B85 FS","SI20LD-3-25,SI--LDK2B85",32,32,41,41,7,7,9,9,6,,"HK1003 -Blackpoint D2 - Rev.0E DD30092021"
1-1529,SI20UEN5D45,"(RFE) FENCING, FINISHING WORKS 20UEN",5121,"HK1003-Rev.0E-3",TT_FinMile,"55902",-,-,-,0,TK_NotStart,18/03/2023,,18/03/2023,,"SI20UEN5D15 FS","SI20UEN5D15","SI20EK-8H13 FS,SI20EK-8H14 FS","SI20EK-8H13,SI20EK-8H14",137,,137,,31,,31,,93,496,"HK1003 -Blackpoint D2 - Rev.0E DD30092021"
1-1530,SI20UEN3D25,"PURCHASING, TRANSPORT FENCING, FINISHING WORKS MATERIAL 20UEN",5121,"HK1003-Rev.0E-3",TT_Task,"55902",-,-,-,0,TK_NotStart,18/12/2022,,11/02/2023,,"SI20UEN2B75 FS","SI20UEN2B75","SI20UEN5D15 FS","SI20UEN5D15",124,,132,,28,,30,,87,496,"HK1003 -Blackpoint D2 - Rev.0E DD30092021"
1-1531,SI20QC-6H15,"ERECTION, NDT, PT / VALVES DOSING SYSTEM 20QC",5121,"HK1003-Rev.0E-3",TT_Task,"55902",-,-,-,0,TK_NotStart,24/08/2022,,20/09/2022,,"SI20QC-6-40 FS,SI20TPM10A6-20 FS","SI20QC-6-40,SI20TPM10A6-20","SI20QCB8-10 FS,SI20QCC8-10 FS,SI20QCD8-10 FS,SI20--P6-75 FS,SI20-6-16# FF,SI20-6-16# SS","SI20QCB8-10,SI20QCC8-10,SI20QCD8-10,SI20--P6-75,SI20-6-16#,SI20-6-16#",107,,111,,25,,26,,78,1632,"HK1003 -Blackpoint D2 - Rev.0E DD30092021"
1-1532,SI20MBA6F15,"ERECTION, NDT, PT / VALVES HCO 20MBA51/54/MBV (BOP FOR LUBE OIL FLUSHING)",5121,"HK1003-Rev.0E-3",TT_Task,"55902",-,-,-,0,TK_NotStart,22/10/2022,,02/12/2022,,"SI20MB-6-40 FS,SP20MB-4A40 FS,SI20MBA6-40 FS,SI20MB-4A25 FS,SI---5P6A09 FS","SI20MB-6-40,SP20MB-4A40,SI20MBA6-40,SI20MB-4A25,SI---5P6A09","SI20MBV6-70 FF,SI20MBA8A10 FS,SI20MBA8-10 FS,SI20MBA8B10 FS,SI20MBX8-10 FS,SI20MBA8D10 FS,SI20MBL8-10 FS,SI20MBP8-10 FS,SI20MBX8E10 FS,SI20MBH8-10 FS,SI20MB-6-56 SS,SI20MBQ6H15 FS,SI20MBV8-10 FS,SI20MBV6-55 FS,SI20-6-16# FF,SI20-6-16# SS","SI20MBV6-70,SI20MBA8A10,SI20MBA8-10,SI20MBA8B10,SI20MBX8-10,SI20MBA8D10,SI20MBL8-10,SI20MBP8-10,SI20MBX8E10,SI20MBH8-10,SI20MB-6-56,SI20MBQ6H15,SI20MBV8-10,SI20MBV6-55,SI20-6-16#,SI20-6-16#",116,,121,,27,,28,,84,176,"HK1003 -Blackpoint D2 - Rev.0E DD30092021"
1-1533,SI20CJF4-25,"TRANSPORT ELECTRICAL / I&C EQUIPMENT HRSG20",5121,"HK1003-Rev.0E-3",TT_Task,"55902",-,-,-,0,TK_NotStart,19/04/2022,,18/05/2022,,"SI20CJF3-80 FS","SI20CJF3-80","SI20CJF4-40 FS","SI20CJF4-40",89,,93,,20,,21,,58,856,"HK1003 -Blackpoint D2 - Rev.0E DD30092021"
1-1534,SI20CJF3-25,"DETAIL DESIGN / MANUFACTURING ELECTRICAL / I&C EQUIPMENT HRSG20",5121,"HK1003-Rev.0E-3",TT_Task,"55902",-,-,-,51,TK_Active,02/04/2021,02/04/2021,21/03/2022,,"SI20CJF2-15 FS,SI--HA-2-85 FS","SI20CJF2-15,SI--HA-2-85","SI20CJF3B70 FS","SI20CJF3B70",34,34,85,,8,8,19,,7,856,"HK1003 -Blackpoint D2 - Rev.0E DD30092021"
1-1535,SI20UBA4-42,"(OTD-OS) ON SITE (ET4d) ELECTRICAL MODULES 20UBA7710/20",5121,"HK1003-Rev.0E-3",TT_FinMile,"55902",-,-,-,0,TK_NotStart,22/06/2022,,22/06/2022,,"SI20UBA4G25 FS,SI20UBA4G52 FS,SI20UBA4G54 FS,SI20UBA4G54 FF","SI20UBA4G25,SI20UBA4G52,SI20UBA4G54,SI20UBA4G54","SI20CPC8-10 FS,SI20BFA8-10 FS,SI20UBA8-11 FS,SI20MBA8-10 FS,SI20SGC6J15 FS,SI20UMC5D50 FS,SI20BFC8-10 FS,SI20UBA8-12 FS,SI20UBA7-104 FS,SI20BZK7-28 FS,SI20BBA8-10 FS,SI20CJ-8-10 FS,SI20UBA7-17 FS,SI20BZK7A27 FS,SI20BZK7D25 FS,SI20BZK7E25 FS,SI20UBA7-102 FS,SI20CPB8-25 FS,SI20MKA8-10 FS,SI--2226-55 FS,SI--2222-35 FS,SI20BZK7D10# FF","SI20CPC8-10,SI20BFA8-10,SI20UBA8-11,SI20MBA8-10,SI20SGC6J15,SI20UMC5D50,SI20BFC8-10,SI20UBA8-12,SI20UBA7-104,SI20BZK7-28,SI20BBA8-10,SI20CJ-8-10,SI20UBA7-17,SI20BZK7A27,SI20BZK7D25,SI20BZK7E25,SI20UBA7-102,SI20CPB8-25,SI20MKA8-10,SI--2226-55,SI--2222-35,SI20BZK7D10#",98,,98,,23,,23,,70,688,"HK1003 -Blackpoint D2 - Rev.0E DD30092021"
1-1536,SI20MKA6E40,"(RFP) READY FOR PIPE CONNECTION GENERATOR - MKA/PGB",5121,"HK1003-Rev.0E-3",TT_FinMile,"55902",-,-,-,0,TK_NotStart,08/02/2023,,08/02/2023,,"SI20MKA5-26 FS","SI20MKA5-26","SI20PGB6H17 FS","SI20PGB6H17",131,,131,,30,,30,,90,336,"HK1003 -Blackpoint D2 - Rev.0E DD30092021"
1-1537,SI20MAD8-25,"COLD COMMISSIONING ST BEARING SYSTEM MAD",5121,"HK1003-Rev.0E-3",TT_Task,"55902",-,-,-,0,TK_NotStart,07/06/2023,,13/06/2023,,"SI20BFG8-50 FS,SI20CPB8-25 FS,SI20MAD8-10 FS,SI20MA-6-66 FS,SI-PM-40 FS,SI20B--8-50 FS,SI20MAX8-25 SS,SI20MA-8-25 SS","SI20BFG8-50,SI20CPB8-25,SI20MAD8-10,SI20MA-6-66,SI-PM-40,SI20B--8-50,SI20MAX8-25,SI20MA-8-25","SI20M--8-67 FS,SI20MA-8-25# SS,SI20MA-8-25# FS,SI20MAJ8-25 FS","SI20M--8-67,SI20MA-8-25#,SI20MA-8-25#,SI20MAJ8-25",148,,149,,34,,34,,98,40,"HK1003 -Blackpoint D2 - Rev.0E DD30092021"
1-1538,SP20MBK3-25,"DESIGN / MANUFACTURING TURNING DEVICE 20MBK",5121,"HK1003-Rev.0E-3",TT_Task,"55902",-,-,-,0,TK_NotStart,23/10/2021,,01/04/2022,,"SP--MBK2-85 FS,SP20MB-3-25 FF","SP--MBK2-85,SP20MB-3-25","SP20MBK3-70 FS,SI20MB-3-72 FF,SI20MB-3-72 FS","SP20MBK3-70,SI20MB-3-72,SI20MB-3-72",64,,86,,14,,20,,35,504,"HK1003 -Blackpoint D2 - Rev.0E DD30092021"
1-1539,SI20UMC2B10,"(MS3) BUILDING FOUNDATION FINAL DIMENSIONS, LOADS AVAILABLE 20UMC",5121,"HK1003-Rev.0E-3",TT_Mile,"55902",-,-,-,100,TK_Complete,15/05/2021,15/05/2021,15/05/2021,15/05/2021,"SI20SCA2-60 FS,SI--M--2C20 FS,SP20MBL2-60 FS,SI--UMC2A60 FS,SI20LBG2C60 FS","SI20SCA2-60,SI--M--2C20,SP20MBL2-60,SI--UMC2A60,SI20LBG2C60","SI20UMC2B40 FS,SI--UMC2E70 FF,SI20UMC2B20 FS,SI20UMC2B15 SS","SI20UMC2B40,SI--UMC2E70,SI20UMC2B20,SI20UMC2B15",41,41,41,41,9,9,9,9,12,,"HK1003 -Blackpoint D2 - Rev.0E DD30092021"
1-1540,SI20UBX2C-55,"(F) DETAIL DESIGN CLADDING WITH CONTRACTOR UBX",5121,"HK1003-Rev.0E-3",TT_Mile,"55902",-,-,-,0,TK_NotStart,08/07/2022,,08/07/2022,,"SI20UBX2-75 FS,SI20UBX2C-50 FS,SI20UBX2C-65 FS","SI20UBX2-75,SI20UBX2C-50,SI20UBX2C-65","SI20UBX3C25 FS","SI20UBX3C25",100,,100,,23,,23,,73,520,"HK1003 -Blackpoint D2 - Rev.0E DD30092021"
1-1541,SP20MAN4-25,"TRANSPORT ST BYPASS VALVES 20MAN",5121,"HK1003-Rev.0E-3",TT_Task,"55902",-,-,-,0,TK_NotStart,27/05/2022,,21/07/2022,,"SP20MAN3-80 FS","SP20MAN3-80","SP20MAN4-40 FS,SI20MAN6-15 FS","SP20MAN4-40,SI20MAN6-15",94,,102,,22,,23,,66,192,"HK1003 -Blackpoint D2 - Rev.0E DD30092021"
1-1542,SI--3332-76,"ELECTRICAL SPECIFICATION BLACK BOXES & LV MOTORS AVAILABLE",5121,"HK1003-Rev.0E-3",TT_Mile,"55902",-,-,-,100,TK_Complete,29/01/2021,29/01/2021,29/01/2021,29/01/2021,"SI--3332-75 FS","SI--3332-75","SP--SGJ2-85 SS,SP--CJT2-85 SS,SP--MB-2A85 SS,SP20MBL2-85 SS,SP--MKC2-85 SS,SI--UBA2G85 SS,SP--CJT2-86 SS,SP--MBK2-85 SS,SI--LCB2B80 FS,SI--UBA2G85 FS,SI20LBG2C80 FS,SI20SCA2-80 FS,SI--GM-2B80 FS,SI--PCB2B80 FS,SI--LCA2B75 FS,SI--LAC2B80 FS,SI20LCL2B80 FS,SI20QC-2-80 FS,SI--SG-2-80 FS,SI--ZTA2A80 FS,SI20QU-2-80 FS,SI20PAH2-80 FS,SI20PAS2A91 FS,SI--EK-2-80 FS,SI20MBA2D80 FS,SI--PAD2-85 FS,SI--SMM2-85 FS,SI--PAC2B85 FS","SP--SGJ2-85,SP--CJT2-85,SP--MB-2A85,SP20MBL2-85,SP--MKC2-85,SI--UBA2G85,SP--CJT2-86,SP--MBK2-85,SI--LCB2B80,SI--UBA2G85,SI20LBG2C80,SI20SCA2-80,SI--GM-2B80,SI--PCB2B80,SI--LCA2B75,SI--LAC2B80,SI20LCL2B80,SI20QC-2-80,SI--SG-2-80,SI--ZTA2A80,SI20QU-2-80,SI20PAH2-80,SI20PAS2A91,SI--EK-2-80,SI20MBA2D80,SI--PAD2-85,SI--SMM2-85,SI--PAC2B85",25,25,25,25,6,6,6,6,3,,"HK1003 -Blackpoint D2 - Rev.0E DD30092021"
1-1543,SI--3332-75,"PREPARATION OF SPECIFICATION BLACK BOXES (LET) & LV-MOTORS",5121,"HK1003-Rev.0E-3",TT_Task,"55902",-,-,-,100,TK_Complete,22/01/2021,22/01/2021,28/01/2021,28/01/2021,"SI--3332-17 FS","SI--3332-17","SI--3332-76 FS","SI--3332-76",24,24,25,25,5,5,6,6,2,,"HK1003 -Blackpoint D2 - Rev.0E DD30092021"
1-1544,SP--B--2-58,"E-CONSUMER LIST - DETAIL MOUNTING LOCATION TO GT I&C",5121,"HK1003-Rev.0E-3",TT_Mile,"55902",-,-,-,100,TK_Complete,30/06/2021,30/06/2021,30/06/2021,30/06/2021,"SI-----1-05 FS","SI-----1-05","SI20MB-9-15 FS","SI20MB-9-15",47,47,47,47,11,11,11,11,19,,"HK1003 -Blackpoint D2 - Rev.0E DD30092021"
1-1545,SI20BAT2-85,"CONTRACT INTO FORCE MAIN TRANSFORMERS BAT/BBT",5121,"HK1003-Rev.0E-3",TT_Mile,"55902",-,-,-,100,TK_Complete,11/05/2021,11/05/2021,11/05/2021,11/05/2021,"SI20BAT2-80 FS","SI20BAT2-80","SI20BAT2-60 FS,SI20BBT3-25 FS,SI20BAT3-25 FS,SI20BAT3B71 FS","SI20BAT2-60,SI20BBT3-25,SI20BAT3-25,SI20BAT3B71",40,40,40,40,9,9,9,9,12,,"HK1003 -Blackpoint D2 - Rev.0E DD30092021"
1-1546,SI20BZL8A27,"COMMISSIONING LIGHTING/SMALL POWER IN UBA/UBF/UBE",5121,"HK1003-Rev.0E-3",TT_Task,"55902",-,-,-,0,TK_NotStart,11/04/2023,,17/04/2023,,"SI20BZL8B12 FS,SI-PM-40 FS,SI20BFG8-50 FS,SI20B--8-52 FS,SI20B--8-50 FS","SI20BZL8B12,SI-PM-40,SI20BFG8-50,SI20B--8-52,SI20B--8-50","SI20M--9-75 FS","SI20M--9-75",140,,141,,32,,32,,94,1320,"HK1003 -Blackpoint D2 - Rev.0E DD30092021"
1-1547,SI20QC-7-15,"ELECTRICAL ERECTION DOSING CONTAINER QC",5121,"HK1003-Rev.0E-3",TT_Task,"55902",-,-,-,0,TK_NotStart,31/08/2022,,06/09/2022,,"SI20QC-6-15 FS","SI20QC-6-15","SI20QCC8-10 FS,SI20QCD8-10 FS,SI20QCB8-10 FS,SI20BZK7D11# FF,SI20BZK7D11# SS","SI20QCC8-10,SI20QCD8-10,SI20QCB8-10,SI20BZK7D11#,SI20BZK7D11#",108,,109,,25,,25,,80,1744,"HK1003 -Blackpoint D2 - Rev.0E DD30092021"
1-1548,SI20MAV6-15,"ERECTION LUBE OIL MODULE UMC 20MAV",5121,"HK1003-Rev.0E-3",TT_Task,"55902",-,-,-,0,TK_NotStart,04/08/2022,,24/08/2022,,"SI--LOG2-50 FS,SI--PEM6-20& FS,SI--PM-2-90 FS,SI--2222-32 SS,SI--3335-65 SS,SP20MAV4-40 FS,SI20MAV4-25 FS,SI--2226-66 FS,SI20MA-6A10 FS","SI--LOG2-50,SI--PEM6-20&,SI--PM-2-90,SI--2222-32,SI--3335-65,SP20MAV4-40,SI20MAV4-25,SI--2226-66,SI20MA-6A10","SI20MAV7-30 FS,SI20SGE6E15 SS,SI20MAV6-40 SS,SI20MAV7-15 FS,SI20BZK7C33 FS,SI20SGE6E15 FS,SI20SGY7A29 FS","SI20MAV7-30,SI20SGE6E15,SI20MAV6-40,SI20MAV7-15,SI20BZK7C33,SI20SGE6E15,SI20SGY7A29",104,,107,,24,,25,,76,408,"HK1003 -Blackpoint D2 - Rev.0E DD30092021"
1-1549,SI20UBF5B15,"ERECTION STEEL STRUCTURE 20UBE/UBF",5121,"HK1003-Rev.0E-3",TT_Task,"55902",-,-,-,0,TK_NotStart,23/04/2022,,13/05/2022,,"SI20UBF5B10 FS","SI20UBF5B10","SI20BAT4-10 FS,SI20UBF5B45 FS","SI20BAT4-10,SI20UBF5B45",90,,92,,21,,21,,59,880,"HK1003 -Blackpoint D2 - Rev.0E DD30092021"
1-1550,SI--GM-2B60,"(DF) INPUT FOR MS3 SUMP PUMP GM",5121,"HK1003-Rev.0E-3",TT_FinMile,"55902",-,-,-,100,TK_Complete,28/05/2021,28/05/2021,28/05/2021,28/05/2021,"SI--GM-2B75 FS,SI--GM-2B85 FS","SI--GM-2B75,SI--GM-2B85","SI20UBH2-60 FS,SI20UBH2-82 FS,SI20UGU2-52 FS,SI20UGU2-59 FS","SI20UBH2-60,SI20UBH2-82,SI20UGU2-52,SI20UGU2-59",42,42,42,42,10,10,10,10,14,,"HK1003 -Blackpoint D2 - Rev.0E DD30092021"
1-1551,SI--GM-2B75,"CONTRACT REVIEW / PREP. RFQ SUMP PUMP GM",5121,"HK1003-Rev.0E-3",TT_Task,"55902",-,-,-,100,TK_Complete,04/05/2021,04/05/2021,14/05/2021,14/05/2021,"SI--GM-2B86 FS,SI--3331-32 FS,SI--G--2A05 FS,SI--G--2-20 FS,SI--UBH2-61 FS,SI-----1-05 FS","SI--GM-2B86,SI--3331-32,SI--G--2A05,SI--G--2-20,SI--UBH2-61,SI-----1-05","SI--GM-2B87 SS,SI--GM-2B60 FS,SI--GM-2B80 FS","SI--GM-2B87,SI--GM-2B60,SI--GM-2B80",39,39,40,40,9,9,9,9,11,,"HK1003 -Blackpoint D2 - Rev.0E DD30092021"
1-1552,SI--CHY2-75,"RFQ PROT./SYNCHR./METERING CHA/CHY",5121,"HK1003-Rev.0E-3",TT_Mile,"55902",-,-,-,100,TK_Complete,23/06/2021,23/06/2021,23/06/2021,23/06/2021,"SI--CHY2-15 FS","SI--CHY2-15","SI--CHY2-80 FS","SI--CHY2-80",46,46,46,46,10,10,10,10,18,,"HK1003 -Blackpoint D2 - Rev.0E DD30092021"
1-1553,SI--CHY2-15,"BASIC DESIGN / SPECIFICATION PROT./SYNCHR./METERING CHA/CHY",5121,"HK1003-Rev.0E-3",TT_Task,"55902",-,-,-,100,TK_Complete,01/05/2021,01/05/2021,22/06/2021,22/06/2021,"SI--3332-27 FS,SI--3332-26 FS,SI--3332-25 FS","SI--3332-27,SI--3332-26,SI--3332-25","SI--CHY2-75 FS","SI--CHY2-75",39,39,46,46,9,9,10,10,10,,"HK1003 -Blackpoint D2 - Rev.0E DD30092021"
1-1554,SI20UMC2B50,"BD - CONSENT LETTER DETAIL DESIGN CONCRETE 20UMC",5121,"HK1003-Rev.0E-3",TT_FinMile,"55902",-,-,-,100,TK_Complete,29/07/2021,29/07/2021,29/07/2021,29/07/2021,"SI20UMC2B40 FF","SI20UMC2B40","SI20UMC5B90 FS","SI20UMC5B90",51,51,51,51,12,12,12,12,23,,"HK1003 -Blackpoint D2 - Rev.0E DD30092021"
1-1555,SI--UMX2-75,"(F) CONCRETE STRUCTURE DWGS ON SITE RELEASED FOR EXECUTION UMX",5121,"HK1003-Rev.0E-3",TT_FinMile,"55902",-,-,-,0,TK_NotStart,06/12/2021,,06/12/2021,,"SI--UMX2-50 FS,SI--UMX2-70 FS,SI20MBR2B65 FS,SI--UMX2-85 FS","SI--UMX2-50,SI--UMX2-70,SI20MBR2B65,SI--UMX2-85","SI20UMX5-05 FS","SI20UMX5-05",70,,70,,16,,16,,40,104,"HK1003 -Blackpoint D2 - Rev.0E DD30092021"
1-1556,SI--CYA2-85,"CONTRACT INTO FORCE TELECOMMUNICATION CYA",5121,"HK1003-Rev.0E-3",TT_Mile,"55902",-,-,-,0,TK_NotStart,30/01/2022,,30/01/2022,,"SI--CYA2-80 FS","SI--CYA2-80","SI--CYA3-25 FS","SI--CYA3-25",78,,78,,18,,18,,47,136,"HK1003 -Blackpoint D2 - Rev.0E DD30092021"
1-1557,SI--CYA2-75,"RFQ TELECOMMUNICATION CYA",5121,"HK1003-Rev.0E-3",TT_Mile,"55902",-,-,-,0,TK_NotStart,05/12/2021,,05/12/2021,,"SI--CYA2-15 FS","SI--CYA2-15","SI--CYA2-80 FS","SI--CYA2-80",70,,70,,16,,16,,40,136,"HK1003 -Blackpoint D2 - Rev.0E DD30092021"
1-1558,SI20UBA7-16,"INSTALLATION ELECTRICAL MODULES 20UBA8110/20",5121,"HK1003-Rev.0E-3",TT_Task,"55902",-,-,-,0,TK_NotStart,21/11/2022,,30/11/2022,,"SI--PEI7-20 FS,SI20BZP7-85 SS,SI20UBA4K25 FS,SI20UBA3K81 FS,SI20UBA7-27 FS","SI--PEI7-20,SI20BZP7-85,SI20UBA4K25,SI20UBA3K81,SI20UBA7-27","SI20BZK7B24 FS,SI20UBA8-11 FS,SI20BFC8-10 FS,SI20SGY6-22 FS,SI20PAC6-06 FF,SI20BZL7E15 FS,SI20SGM6-18 FS,SI20SGC6J16 FS,SI20BZP7-145 FS,SI20BZL7E15 FF,SI20UBA5B12 SS","SI20BZK7B24,SI20UBA8-11,SI20BFC8-10,SI20SGY6-22,SI20PAC6-06,SI20BZL7E15,SI20SGM6-18,SI20SGC6J16,SI20BZP7-145,SI20BZL7E15,SI20UBA5B12",120,,121,,28,,28,,85,80,"HK1003 -Blackpoint D2 - Rev.0E DD30092021"
1-1559,SI20UBA8-11,"(TOP-20UBA8) POWER CONTROL CENTER (ELECTRICAL MODULES) 20UBA8110/20",5121,"HK1003-Rev.0E-3",TT_FinMile,"55902",-,-,-,0,TK_NotStart,10/04/2023,,10/04/2023,,"SI20UBA7-104 FS,SI20UBA7-17 FS,SI20UBA7-16 FS,SI20BZL7E15 FS,SI20UBA4-42 FS,SI--B--2-68 FS,SI20BZK7B24 FS,SI20BZP7-160 FS,SI--B--2-93 FS","SI20UBA7-104,SI20UBA7-17,SI20UBA7-16,SI20BZL7E15,SI20UBA4-42,SI--B--2-68,SI20BZK7B24,SI20BZP7-160,SI--B--2-93","SI20PAB8-25 FS,SI20UBA8G26 FS","SI20PAB8-25,SI20UBA8G26",140,,140,,32,,32,,94,48,"HK1003 -Blackpoint D2 - Rev.0E DD30092021"
1-1560,SI--2222-22,"PREPARATION PREL. OPERATING MANUAL (BHB)",5121,"HK1003-Rev.0E-3",TT_Task,"55902",-,-,-,0,TK_NotStart,11/02/2023,,10/06/2023,,"SI--2222-10 SS,SI--2222-21 SS","SI--2222-10,SI--2222-21","SI--2222-23 FS","SI--2222-23",132,,149,,30,,34,,90,104,"HK1003 -Blackpoint D2 - Rev.0E DD30092021"
1-1561,SI--2222-23,"PREL. OPERATING MANUAL (BHB)",5121,"HK1003-Rev.0E-3",TT_Mile,"55902",-,-,-,0,TK_NotStart,11/06/2023,,11/06/2023,,"SI--2222-22 FS","SI--2222-22","SI--2222-24 FS,SI20MB-9-15 FS,SI--2222-26 FS","SI--2222-24,SI20MB-9-15,SI--2222-26",149,,149,,34,,34,,98,104,"HK1003 -Blackpoint D2 - Rev.0E DD30092021"
1-1562,SI20SGA3-80,"(RFS) READY FOR SHIPMENT FIRE FIGHTING INDOOR HYDRANTS SGA 20UMC",5121,"HK1003-Rev.0E-3",TT_FinMile,"55902",-,-,-,0,TK_NotStart,14/04/2022,,14/04/2022,,"SI20SGA4-10 FS","SI20SGA4-10","SI20SGA4-25 FS","SI20SGA4-25",88,,88,,20,,20,,57,1016,"HK1003 -Blackpoint D2 - Rev.0E DD30092021"
1-1563,SI20BFT3-80,"(RFS) READY FOR SHIPMENT LV-TRANSFORMERS",5121,"HK1003-Rev.0E-3",TT_FinMile,"55902",-,-,-,0,TK_NotStart,29/05/2022,,29/05/2022,,"SI20BFT4-10 FS","SI20BFT4-10","SI--BFT2-05 FS,SI20BFT4-25 FS,SI--BHT4-25 FS","SI--BFT2-05,SI20BFT4-25,SI--BHT4-25",95,,95,,22,,22,,67,816,"HK1003 -Blackpoint D2 - Rev.0E DD30092021"
1-1564,SI20BAT8-10,"(TOP-20BAT) TRANSFORMER BAT01 AND BBT01",5121,"HK1003-Rev.0E-3",TT_FinMile,"55902",-,-,-,0,TK_NotStart,13/02/2023,,13/02/2023,,"SI20BAT5B15 FS,SI20BAT7-15 FS,SI20UBF5B45 FS,SI--9998-20& SS,SI20BAT7B72 FS,SI20BBT7-16 FS","SI20BAT5B15,SI20BAT7-15,SI20UBF5B45,SI--9998-20&,SI20BAT7B72,SI20BBT7-16","SI20BAT8-25 FS,SI20BBT8-25 FS","SI20BAT8-25,SI20BBT8-25",132,,132,,30,,30,,90,16,"HK1003 -Blackpoint D2 - Rev.0E DD30092021"
1-1565,SI20BZK7D25,"CABLING FROM 20UBA (10x) TO 01UBA9010/20",5121,"HK1003-Rev.0E-3",TT_Task,"55902",-,-,-,0,TK_NotStart,30/11/2022,,24/01/2023,,"SI--PEI7-20 FS,SI20BZK7-25 FS,SI--B--2-68 SS,SI20BZK4-41 FS,SI20BZP7-50 FS,SI20UBA7-15 SS,SI20BZP7-160 FS,SI--B--7-55 FS,SI20UBA7-25 FS,SI20BZP7-115 FS,SI20UBA7-17 SS,SI20UBA4-42 FS,SI20BZP7-45 FS,SI20BZK7-25 SS,SI--B--2-93 FS,SI--BZK4-40 FS","SI--PEI7-20,SI20BZK7-25,SI--B--2-68,SI20BZK4-41,SI20BZP7-50,SI20UBA7-15,SI20BZP7-160,SI--B--7-55,SI20UBA7-25,SI20BZP7-115,SI20UBA7-17,SI20UBA4-42,SI20BZP7-45,SI20BZK7-25,SI--B--2-93,SI--BZK4-40","SI20UBA8-12 FS,SI--2226-55 FS,SI20CJ-8-25 FS,SI20BZK7D10# FF,SI20BZK7D10# SS","SI20UBA8-12,SI--2226-55,SI20CJ-8-25,SI20BZK7D10#,SI20BZK7D10#",121,,129,,28,,30,,86,80,"HK1003 -Blackpoint D2 - Rev.0E DD30092021"
1-1566,SI20BZK7B24,"CABLING FROM 20UBA (10x) TO 20UBA8110/20 AND URD",5121,"HK1003-Rev.0E-3",TT_Task,"55902",-,-,-,0,TK_NotStart,26/12/2022,,12/02/2023,,"SI--PEI7-20 FS,SI--B--7-55 FS,SI--B--2-68 FS,SI20UBA7-16 FS,SI20BZP7-85 FS,SI20BZK4-41 FS,SI20BZK7-25 FS,SI20UBA7-105 FS,SI20BZK7-25 SS,SI--B--2-93 FS,SI--BZK4-40 FS","SI--PEI7-20,SI--B--7-55,SI--B--2-68,SI20UBA7-16,SI20BZP7-85,SI20BZK4-41,SI20BZK7-25,SI20UBA7-105,SI20BZK7-25,SI--B--2-93,SI--BZK4-40","SI20BFC8-10 FS,SI20UBA8-11 FS,SI20PAB8-05 FS,SI--2226-55 SS,SI20BZK7D10# FF,SI20BZK7D10# SS","SI20BFC8-10,SI20UBA8-11,SI20PAB8-05,SI--2226-55,SI20BZK7D10#,SI20BZK7D10#",125,,132,,29,,30,,87,80,"HK1003 -Blackpoint D2 - Rev.0E DD30092021"
1-1567,SI20MKA7-15,"E- AND I&C- INSTALLATION (INCL.EARTHING / STARPOINT TRANSFORMER) GEN 20",5121,"HK1003-Rev.0E-3",TT_Task,"55902",-,-,-,0,TK_NotStart,13/11/2022,,03/12/2022,,"SI20BZK7A27 FS,SI20BZK7E25 SS","SI20BZK7A27,SI20BZK7E25","SI20MKA8-10 FS,SI20BZK7D10# FF,SI20BZK7D10# SS,SI20BZK7D11# FF,SI20BZK7D11# SS","SI20MKA8-10,SI20BZK7D10#,SI20BZK7D10#,SI20BZK7D11#,SI20BZK7D11#",119,,122,,27,,28,,85,1280,"HK1003 -Blackpoint D2 - Rev.0E DD30092021"
1-1568,SI20PAB8-25,"COLD COMMISSIONING COOLING WATER SYSTEMS PAB",5121,"HK1003-Rev.0E-3",TT_Task,"55902",-,-,-,0,TK_NotStart,15/04/2023,,19/05/2023,,"SI20UBA8-11 FS,SI20PAB8-05 FS,SI20UPY6M11 FS,SI20B--8-50 FS,SI-PM-40 FS","SI20UBA8-11,SI20PAB8-05,SI20UPY6M11,SI20B--8-50,SI-PM-40","SI20PAD8-55 FS,SI20PCB8M26 SS","SI20PAD8-55,SI20PCB8M26",141,,145,,32,,34,,95,56,"HK1003 -Blackpoint D2 - Rev.0E DD30092021"
1-1569,SI20HB-4B40,"(OTD-OS) ON SITE SECONDARY STEEL STRUCTURE HRSG20_1st Part incl. Drum Supports",5121,"HK1003-Rev.0E-3",TT_FinMile,"55902",-,-,-,0,TK_NotStart,07/02/2022,,07/02/2022,,"SI20HB-4B25 FS","SI20HB-4B25","SI20HB-6C28 FS,SI20HB-6C25 FS,SI20HB-6C24 FS","SI20HB-6C28,SI20HB-6C25,SI20HB-6C24",79,,79,,18,,18,,48,640,"HK1003 -Blackpoint D2 - Rev.0E DD30092021"
1-1570,SI20USX5-20,"(H) START PLACING FORMWORK 20USX",5121,"HK1003-Rev.0E-3",TT_Mile,"55902",-,-,-,0,TK_NotStart,16/07/2022,,16/07/2022,,"SI20USX5-10 FS,SI-----5-21& FS,SI20USX2-45 FS","SI20USX5-10,SI-----5-21&,SI20USX2-45","SI20USX5-15 FS,SI20USX5-15.00 FS","SI20USX5-15,SI20USX5-15.00",102,,102,,23,,23,,73,1632,"HK1003 -Blackpoint D2 - Rev.0E DD30092021"
1-1571,SI20HA-6C22&,"START ERECTION PRESSURE PARTS HRSG20",5121,"HK1003-Rev.0E-3",TT_Mile,"55902",-,-,-,0,TK_NotStart,01/04/2022,,01/04/2022,,"","","SI20HA-6C22 SS","SI20HA-6C22",86,,86,,20,,20,,55,0,"HK1003 -Blackpoint D2 - Rev.0E DD30092021"
1-1572,SI20MA-6-55&,"START LUBE OIL FLUSHING COMPLETE TURBOSET ST20",5121,"HK1003-Rev.0E-3",TT_Mile,"55902",-,-,-,0,TK_NotStart,21/02/2023,,21/02/2023,,"","","SI20MAV6-55 SS","SI20MAV6-55",133,,133,,31,,31,,91,32,"HK1003 -Blackpoint D2 - Rev.0E DD30092021"
1-1573,SI--BHT4-25,"TRANSPORT LV TRANSFORMER 20BFT03/04",5121,"HK1003-Rev.0E-3",TT_Task,"55902",-,-,-,0,TK_NotStart,12/09/2022,,06/11/2022,,"SI20BFT3-80 FS","SI20BFT3-80","SI--BHT4-40 FS","SI--BHT4-40",110,,118,,25,,27,,81,200,"HK1003 -Blackpoint D2 - Rev.0E DD30092021"
1-1574,SI20BZL8E10,"(TOP-20BZL-04) LIGHTING/SMALL POWER IN 20URD/URA/UGJ",5121,"HK1003-Rev.0E-3",TT_FinMile,"55902",-,-,-,0,TK_NotStart,03/05/2023,,03/05/2023,,"SI20BZL7E18 FS,SI20BZL7E17 FS,SI20BZL7E16 FS","SI20BZL7E18,SI20BZL7E17,SI20BZL7E16","SI20BZL8E25 FS","SI20BZL8E25",143,,143,,33,,33,,96,352,"HK1003 -Blackpoint D2 - Rev.0E DD30092021"
1-1575,SI---4P2A10,"LAST SUPPLIER INPUT GROUP4 (GHD,GKB,GMx,QFB,SCB,SGA,MAA/B/C)",5121,"HK1003-Rev.0E-3",TT_FinMile,"55902",-,-,-,100,TK_Complete,19/07/2021,19/07/2021,19/07/2021,19/07/2021,"SI--PAC2B65 SS,SI--M--2C20 SS,SI20PAS2B65 SS,SP20MBL2-10 SS,SP--MB-2-07 FS,SI20MBA2D65 SS,SP20MBL2-05 SS,SI20MBV2-67 FS,SI20PCC2B67 FS,SI20PAA2-35 FS,SP20MA2B43 FS,SP20MA2B42 FS","SI--PAC2B65,SI--M--2C20,SI20PAS2B65,SP20MBL2-10,SP--MB-2-07,SI20MBA2D65,SP20MBL2-05,SI20MBV2-67,SI20PCC2B67,SI20PAA2-35,SP20MA2B43,SP20MA2B42","SI---5P2A10 FF,SI-P2I-1 FS,SI-P222-171 FS,SI---1P2H536 FF,SI---1P2H537 FF,SI---1P2A525 FF,SI---1P2H538 FF","SI---5P2A10,SI-P2I-1,SI-P222-171,SI---1P2H536,SI---1P2H537,SI---1P2A525,SI---1P2H538",50,50,50,50,11,11,11,11,22,,"HK1003 -Blackpoint D2 - Rev.0E DD30092021"
1-1576,SI20UBN2-5,"(MS3) CONCRETE STRUCTURE FINAL DIMENSIONS, LOADS AVAILABLE 20UBN",5121,"HK1003-Rev.0E-3",TT_FinMile,"55902",-,-,-,0,TK_NotStart,13/10/2021,,13/10/2021,,"SI20XKA2-60 FS,SI20XKA2-85 FS","SI20XKA2-60,SI20XKA2-85","SI20UBN2-10 FS,SI20UBN2-15 FS,SI20UBN2J60 FS","SI20UBN2-10,SI20UBN2-15,SI20UBN2J60",62,,62,,14,,14,,34,2120,"HK1003 -Blackpoint D2 - Rev.0E DD30092021"
1-1577,SI20UBA5B61,"(HS) START ERECTION STEEL STRUCTURE 20UBA7xxx",5121,"HK1003-Rev.0E-3",TT_Mile,"55902",-,-,-,0,TK_NotStart,27/07/2022,,27/07/2022,,"SI20UBA3B25 FS,SI20UBA5-17 FS,SI20UBA7-17 SS,SI20UBA7-32 SS,SI20UBA7-29 SS,SI20UBA7-35 SS","SI20UBA3B25,SI20UBA5-17,SI20UBA7-17,SI20UBA7-32,SI20UBA7-29,SI20UBA7-35","SI20UBA5B59 FS","SI20UBA5B59",103,,103,,24,,24,,75,592,"HK1003 -Blackpoint D2 - Rev.0E DD30092021"
1-1578,SI20LCW7H15,"ELECTRICAL ERECTION PIPES / VALVES 20LCW",5121,"HK1003-Rev.0E-3",TT_Task,"55902",-,-,-,0,TK_NotStart,16/02/2023,,01/03/2023,,"SI20LCW6H15 FF,SI20BZK7E25 FF,SI20BZP7D18 FS,SI20BZP7D19 FS,SI20BZP7-5 FS,SI20BZP7-196 FS,SI20BZP7-174 FS,SI20UMY6M10 FS,SI20UMY6M11 FS,SI20UMY6M12 FS,SI--2227-68 FS,SI--BZP2-05 FS,SI--PEE7-20 FS,SI--BZP4B40 FS,SI20LCW6H16 FS","SI20LCW6H15,SI20BZK7E25,SI20BZP7D18,SI20BZP7D19,SI20BZP7-5,SI20BZP7-196,SI20BZP7-174,SI20UMY6M10,SI20UMY6M11,SI20UMY6M12,SI--2227-68,SI--BZP2-05,SI--PEE7-20,SI--BZP4B40,SI20LCW6H16","SI20LAC8B10 FS,SI20LD8B110 FS,SI20LCA8M10 FS,SI20LAC8B10 FF","SI20LAC8B10,SI20LD8B110,SI20LCA8M10,SI20LAC8B10",132,,134,,30,,31,,91,184,"HK1003 -Blackpoint D2 - Rev.0E DD30092021"
1-1579,SI20MAG7A15,"ELECTRICAL ERECTION / VALVES MAG",5121,"HK1003-Rev.0E-3",TT_Task,"55902",-,-,-,0,TK_NotStart,30/12/2022,,05/01/2023,,"SI20MAG6A45 FF,SI20BZK7C33 FF,SI20BZP7D18 FS,SI20BZP7D19 FS,SI20BZP7-5 FS,SI20BZP7-196 FS,SI20BZP7-174 FS,SI20UMY6M10 FS,SI20UMY6M11 FS,SI20UMY6M12 FS,SI--2227-68 FS,SI--BZP2-05 FS,SI--PEE7-20 FS,SI--BZP4B40 FS","SI20MAG6A45,SI20BZK7C33,SI20BZP7D18,SI20BZP7D19,SI20BZP7-5,SI20BZP7-196,SI20BZP7-174,SI20UMY6M10,SI20UMY6M11,SI20UMY6M12,SI--2227-68,SI--BZP2-05,SI--PEE7-20,SI--BZP4B40","SI20MAG8-10 FS,SI20BZK7D11# FF,SI20BZK7D11# SS","SI20MAG8-10,SI20BZK7D11#,SI20BZK7D11#",125,,126,,29,,29,,88,792,"HK1003 -Blackpoint D2 - Rev.0E DD30092021"
1-1580,SI20MA-6-07,"PLACING BEARING CASINGS INCL. ANCHOR BOLTS MA",5121,"HK1003-Rev.0E-3",TT_Task,"55902",-,-,-,0,TK_NotStart,24/06/2022,,30/06/2022,,"SI20UMC5A45 FS,SI20UMC6M15 FS,SI20MAD4-40 FS,SI20MAG6-16 SS,SI20SMM6-70 FS,SI20UMC5C56 SS","SI20UMC5A45,SI20UMC6M15,SI20MAD4-40,SI20MAG6-16,SI20SMM6-70,SI20UMC5C56","SI20MA-6-30 FS,SI20MA-6B47 SS,SI20MA-6A17# SS,SI20MA-6B83 FS","SI20MA-6-30,SI20MA-6B47,SI20MA-6A17#,SI20MA-6B83",98,,99,,23,,23,,71,24,"HK1003 -Blackpoint D2 - Rev.0E DD30092021"
1-1581,SP20MBL2-70,"I&C INPUT (P&ID, DESCR., SIGNAL EXCHANGE DWGS) AIR INTAKE SYSTEM MBL",5121,"HK1003-Rev.0E-3",TT_Mile,"55902",-,-,-,100,TK_Complete,10/05/2021,10/05/2021,10/05/2021,10/05/2021,"SP20MBL2-85 FS,SI-----1-04 SS","SP20MBL2-85,SI-----1-04","SP--MB-2A55 FS","SP--MB-2A55",40,40,40,40,9,9,9,9,12,,"HK1003 -Blackpoint D2 - Rev.0E DD30092021"
1-1582,SI20MBA6D40,"(RFP) READY FOR PIPE CONNECTION WASH WATER TANK 20MBA",5121,"HK1003-Rev.0E-3",TT_FinMile,"55902",-,-,-,0,TK_NotStart,28/10/2022,,28/10/2022,,"SI20MBA6D15 SS","SI20MBA6D15","SI20GKB6H15 FS,SI20MBA6A15 FS,SI20MB-6A15 FS,SI20GM-6H17 FS","SI20GKB6H15,SI20MBA6A15,SI20MB-6A15,SI20GM-6H17",116,,116,,27,,27,,84,224,"HK1003 -Blackpoint D2 - Rev.0E DD30092021"
1-1583,SI20HB-6-20,"INSTALL PIPING HRSG20_Small Bore",5121,"HK1003-Rev.0E-3",TT_Task,"55902",-,-,-,0,TK_NotStart,04/08/2022,,17/03/2023,,"SI20HB-6-14 FS,SI20HA-6A48 FS,SI20HB-6-15 SS,SI20HB-6-48 FF,SI20HA-4C40 FF,SI20HA-6-40 FS,SI20HB-6-53 FF","SI20HB-6-14,SI20HA-6A48,SI20HB-6-15,SI20HB-6-48,SI20HA-4C40,SI20HA-6-40,SI20HB-6-53","SI20BZL7G15 SS,SI20HA-6-20 FF,SI20HA-6A16# FF,SI20HA-6-16# FF","SI20BZL7G15,SI20HA-6-20,SI20HA-6A16#,SI20HA-6-16#",104,,136,,24,,31,,76,0,"HK1003 -Blackpoint D2 - Rev.0E DD30092021"
1-1584,SI20HB-6-15,"PRE-ASSEMBLY PIPING HRSG20_Small Bore",5121,"HK1003-Rev.0E-3",TT_Task,"55902",-,-,-,0,TK_NotStart,04/06/2022,,26/08/2022,,"SI20HA-4B41 FS,SI20HA-6A48 FS","SI20HA-4B41,SI20HA-6A48","SI20HB-6-20 SS,SI20HA-6A16# FF","SI20HB-6-20,SI20HA-6A16#",96,,107,,22,,25,,68,152,"HK1003 -Blackpoint D2 - Rev.0E DD30092021"
1-1585,SI20HB-6-14,"INSTALL PIPING HRSG20_External Large Bore - HRSG TP FOR PIPING AVAILABLE",5121,"HK1003-Rev.0E-3",TT_Task,"55902",-,-,-,0,TK_NotStart,06/05/2022,,03/08/2022,,"SI20HA-4C40 FF,SI20HA-4B42 FS,SI20HA-6D17 FS,SI20HA-4B40 FS,SI-----1-01 FS,SI20HB-6-48 SS,SI20HB-6-13 SS,SI20HA-6C22 FS,SI20HA-4G40 FS,SI20HA-6A48 FS","SI20HA-4C40,SI20HA-4B42,SI20HA-6D17,SI20HA-4B40,SI-----1-01,SI20HB-6-48,SI20HB-6-13,SI20HA-6C22,SI20HA-4G40,SI20HA-6A48","SI20HB-6C23 SS,SI20HAA8E17 FS,SI20LCL8B10 FS,SI20HAD8G10 FS,SI20HAD8E10 FS,SI20LBH8D10 FS,SI20HAD8F10 FS,SI20HA-6-20 FF,SI20HB-6-20 FS,SI20HA-6-56 FS,SI20HA-6A16# FF,SI20LCL6B41 SS,SI20HA-6-16# FF,SI20HA-6-40 FS,SI20HB-6-53 FS","SI20HB-6C23,SI20HAA8E17,SI20LCL8B10,SI20HAD8G10,SI20HAD8E10,SI20LBH8D10,SI20HAD8F10,SI20HA-6-20,SI20HB-6-20,SI20HA-6-56,SI20HA-6A16#,SI20LCL6B41,SI20HA-6-16#,SI20HA-6-40,SI20HB-6-53",91,,104,,21,,24,,63,0,"HK1003 -Blackpoint D2 - Rev.0E DD30092021"
1-1586,SI20BFC8-10,"(TOP-20BFC) LV SWITCHGEAR 20BFC/BFD",5121,"HK1003-Rev.0E-3",TT_FinMile,"55902",-,-,-,0,TK_NotStart,17/04/2023,,17/04/2023,,"SI20UBA7-104 FS,SI20UBA7-17 FS,SI20UBA7-16 FS,SI20BZK7B24 FS,SI20UBA4-42 FS,SI20BZP7-160 FS,SI--B--2-68 FS,SI--B--2-93 FS","SI20UBA7-104,SI20UBA7-17,SI20UBA7-16,SI20BZK7B24,SI20UBA4-42,SI20BZP7-160,SI--B--2-68,SI--B--2-93","SI20BFC8-25 FS","SI20BFC8-25",141,,141,,32,,32,,95,200,"HK1003 -Blackpoint D2 - Rev.0E DD30092021"
1-1587,SI20CPD8-11,"(TOP-20CP-AA) INTERFACE PANELS IN FUNCTION AREA 00 AUXILIARY AND ANCILIARY",5121,"HK1003-Rev.0E-3",TT_FinMile,"55902",-,-,-,0,TK_NotStart,27/02/2023,,27/02/2023,,"SI--B--2-68 FS,SI20UBA7-25 FS,SI20CR-8-10 SS,SI20UBA7-15 FS,SI--B--2-93 FS","SI--B--2-68,SI20UBA7-25,SI20CR-8-10,SI20UBA7-15,SI--B--2-93","SI20CPD8-36 FS","SI20CPD8-36",134,,134,,31,,31,,92,16,"HK1003 -Blackpoint D2 - Rev.0E DD30092021"
1-1588,SI20HB-6-13,"INSTALL PIPING HRSG20_Internal Large Bore",5121,"HK1003-Rev.0E-3",TT_Task,"55902",-,-,-,0,TK_NotStart,01/04/2022,,23/06/2022,,"SI20HA-4B40 FS,SI20HA-6C22 SS,SI20HA-4G40 FF","SI20HA-4B40,SI20HA-6C22,SI20HA-4G40","SI20HA-6-20 FF,SI20HA-6-40 FS,SI20HA-6-56 FS,SI20HB-8-26 SS,SI20HA-6A16# FF,SI20HB-6-14 SS,SI20HA-6-16# SS","SI20HA-6-20,SI20HA-6-40,SI20HA-6-56,SI20HB-8-26,SI20HA-6A16#,SI20HB-6-14,SI20HA-6-16#",86,,98,,20,,23,,55,280,"HK1003 -Blackpoint D2 - Rev.0E DD30092021"
1-1589,SI20MB-7-05,"ELECTRICAL TEMPORARIES FOR OIL FLUSHING GT20",5121,"HK1003-Rev.0E-3",TT_Task,"55902",-,-,-,0,TK_NotStart,17/02/2023,,23/02/2023,,"SI20MB-6-25 FS,SI20MA-6D20 FF","SI20MB-6-25,SI20MA-6D20","SI20MBV6-55 FS","SI20MBV6-55",132,,133,,31,,31,,91,8,"HK1003 -Blackpoint D2 - Rev.0E DD30092021"
1-1590,SI20MB-7-20,"INSTALLATION OF HEAT TRACING GT20",5121,"HK1003-Rev.0E-3",TT_Task,"55902",-,-,-,0,TK_NotStart,01/10/2022,,14/10/2022,,"SI20MB-6-25 FS,SI20MB-6-20 FS","SI20MB-6-25,SI20MB-6-20","SI20MBA8-10 FS,SI20MB-6-38 SS","SI20MBA8-10,SI20MB-6-38",113,,114,,26,,26,,82,208,"HK1003 -Blackpoint D2 - Rev.0E DD30092021"
1-1591,SI20HB-3E26,"MANUFACTURING INLET DUCT HRSG20",5121,"HK1003-Rev.0E-3",TT_Task,"55902",-,-,-,68,TK_Active,12/05/2021,12/05/2021,05/12/2021,,"SI20HB-3E25 FS,SI20HB-3F26 SS,SI20HB-3A25 SS","SI20HB-3E25,SI20HB-3F26,SI20HB-3A25","SI20HB-3B75 FS","SI20HB-3B75",40,40,70,,9,9,16,,12,920,"HK1003 -Blackpoint D2 - Rev.0E DD30092021"
1-1592,SI20BUK2-15,"BASIC DESIGN / SPECIFICATION INVERTER,CONVERTER,BATTERY CHARGER BRU/BTL",5121,"HK1003-Rev.0E-3",TT_Task,"55902",-,-,-,100,TK_Complete,30/07/2021,30/07/2021,18/08/2021,18/08/2021,"SI--3331-32 FS,SI--3332-26 FS,SP--B--2-50 FS,SI--3332-27 FS,SI--B--2A55 FS","SI--3331-32,SI--3332-26,SP--B--2-50,SI--3332-27,SI--B--2A55","SI20BUK2-75 FS","SI20BUK2-75",51,51,54,54,12,12,12,12,23,,"HK1003 -Blackpoint D2 - Rev.0E DD30092021"
1-1593,SI20HB-6-44,"PRE-ASSEMBLY STACK INCL. INSULATION / SEC. STEEL HRSG 3rd/4th part",5121,"HK1003-Rev.0E-3",TT_Task,"55902",-,-,-,0,TK_NotStart,29/04/2022,,02/06/2022,,"SI20HB-6-41 FS,SI20HB-4D40 FS","SI20HB-6-41,SI20HB-4D40","SI20HB-6-45 FS,SI20BZP7-195 SS,SI20BZP7-115 FS,SI20BZP7-90 FS","SI20HB-6-45,SI20BZP7-195,SI20BZP7-115,SI20BZP7-90",90,,95,,21,,22,,60,376,"HK1003 -Blackpoint D2 - Rev.0E DD30092021"
1-1594,SI20BAT4-10,"PLACEMENT ON FOUNDATION TRANSFORMER 20BAT",5121,"HK1003-Rev.0E-3",TT_Task,"55902",-,-,-,0,TK_NotStart,13/08/2022,,19/08/2022,,"SI20BAT2-05 FS,SI20BAT4-25 FS,SI20UBF5B15 FS,SI20UBF5E45 FS,SI20UBF5B45 FS,SI20BAT3-81 FS","SI20BAT2-05,SI20BAT4-25,SI20UBF5B15,SI20UBF5E45,SI20UBF5B45,SI20BAT3-81","SI20UBF5D15 FS,SI20XKA7-15 FS,SI20BAT5B15 FS,SI20BAT7-15 FS,SI20ACA7-65 FS,SI20BBT7-15 FS","SI20UBF5D15,SI20XKA7-15,SI20BAT5B15,SI20BAT7-15,SI20ACA7-65,SI20BBT7-15",106,,106,,24,,24,,77,152,"HK1003 -Blackpoint D2 - Rev.0E DD30092021"
1-1595,SI-----1-01,"(LNTP) START PRE-ENGINEERING",5121,"HK1003-Rev.0E-3",TT_Mile,"55902",-,-,-,100,TK_Complete,01/08/2020,01/08/2020,01/08/2020,01/08/2020,"SI-----1-05 SS","SI-----1-05","SI--HA-2-80 SS,SI--2222-70 SS,SI--6662-26 SS,SI--3331-36 SS,SI--HA-2-81 SS,SI--HA-2-75 SS,SI--HA-2-92 SS,SI--BZP2-14 FS,SI--LAC2B75 FS,SI20UBA2G60 SS,SI--UBH2-61 FS,SI--LCB2B20 SS,SI20---2M10 SS,SI--LBF2B65 SS,SI--UB-2-35 FS,SI--PGB2D75 FS,SI--B--2-92 FS,SI--BFT2-60 SS,SI--UBA2K60 SS,SI--LBF2B75 FS,SI--BAW2-02 SS,SI20USX2-15 FS,SI20BAT2-15 SS,SI--L--2-35 FS,SI--SG-2-80 FS,SI--LDK2B75 FS,SI20UBA2-5 FS,SI20BAT2-60 SS,SI20HS-2-87 SS,SI20---2M60 SS,SI--PCB2B75 FS,SI--PGB2C75 FS,SI--PDB2B75 FS,SI--B--2-03 SS,SI--3331-30 SS,SI20MBA2D65 SS,SI--P--2-35 FS,SI--PGB2B75 FS,SI--LCA2B75 FS,SI--SA-2-01 FS,SI--EK-2-65 SS,SI20UBA2-20 FS,SI--LCB2B75 FS,SI--UR-2-35 FS,SI--BFF2-15 SS,SI--BAC2-60 SS,SI--LCB2B60 SS,SI--3331-36 FS,SI20LCL2B60 SS,SI--PAC2B14 SS,SI--HA-2-79 FS,SI--6662-26 FS,SI20HB-6-14 FS,SI20UBA2G61 FS,SI20UBA2G62 FS,SI--SG-2-21 FS,CL20UBZ-10 FS,CL20UBZ-15 FS,CLP20UEZ2-105 FS,SI--5552-10 FS,SI--HA-2-94& FS,SP20MA-3-82 FS,CLP20ULZ2-97 FS,SI20--2-10& FS,SI20--2-15& FS,SI20--2-20& FS,SI20--2-25& FS,SI20--2-30& FS,SI20--2-35& FS,SI20--2-40& FS,SI20--2-45& FS,SI-----2M08 FS,SI--H--2-10 FS,SI20SD-310& FS,SI-----1-03 FS","SI--HA-2-80,SI--2222-70,SI--6662-26,SI--3331-36,SI--HA-2-81,SI--HA-2-75,SI--HA-2-92,SI--BZP2-14,SI--LAC2B75,SI20UBA2G60,SI--UBH2-61,SI--LCB2B20,SI20---2M10,SI--LBF2B65,SI--UB-2-35,SI--PGB2D75,SI--B--2-92,SI--BFT2-60,SI--UBA2K60,SI--LBF2B75,SI--BAW2-02,SI20USX2-15,SI20BAT2-15,SI--L--2-35,SI--SG-2-80,SI--LDK2B75,SI20UBA2-5,SI20BAT2-60,SI20HS-2-87,SI20---2M60,SI--PCB2B75,SI--PGB2C75,SI--PDB2B75,SI--B--2-03,SI--3331-30,SI20MBA2D65,SI--P--2-35,SI--PGB2B75,SI--LCA2B75,SI--SA-2-01,SI--EK-2-65,SI20UBA2-20,SI--LCB2B75,SI--UR-2-35,SI--BFF2-15,SI--BAC2-60,SI--LCB2B60,SI--3331-36,SI20LCL2B60,SI--PAC2B14,SI--HA-2-79,SI--6662-26,SI20HB-6-14,SI20UBA2G61,SI20UBA2G62,SI--SG-2-21,CL20UBZ-10,CL20UBZ-15,CLP20UEZ2-105,SI--5552-10,SI--HA-2-94&,SP20MA-3-82,CLP20ULZ2-97,SI20--2-10&,SI20--2-15&,SI20--2-20&,SI20--2-25&,SI20--2-30&,SI20--2-35&,SI20--2-40&,SI20--2-45&,SI-----2M08,SI--H--2-10,SI20SD-310&,SI-----1-03",0,0,0,0,0,0,0,0,0,,"HK1003 -Blackpoint D2 - Rev.0E DD30092021"
1-1596,SI--GM-4B40,"(OTD-OS) ON SITE SUMP PUMP GM",5121,"HK1003-Rev.0E-3",TT_FinMile,"55902",-,-,-,0,TK_NotStart,25/06/2022,,25/06/2022,,"SI--GM-4B25 FS","SI--GM-4B25","SI20GM-6B15 FS,SI20GM-6E15 FS","SI20GM-6B15,SI20GM-6E15",99,,99,,23,,23,,71,480,"HK1003 -Blackpoint D2 - Rev.0E DD30092021"
1-1597,SI--GM-4B25,"TRANSPORT SUMP PUMP GM",5121,"HK1003-Rev.0E-3",TT_Task,"55902",-,-,-,0,TK_NotStart,01/05/2022,,25/06/2022,,"SI--GM-3B80 FS","SI--GM-3B80","SI--GM-4B40 FS","SI--GM-4B40",91,,99,,21,,23,,60,480,"HK1003 -Blackpoint D2 - Rev.0E DD30092021"
1-1598,SI--GM-3B26,"MANUFACTURING / SHOP TEST SUMP PUMP GM",5121,"HK1003-Rev.0E-3",TT_Task,"55902",-,-,-,0,TK_NotStart,02/10/2021,,02/04/2022,,"SI--GM-2B85 FS","SI--GM-2B85","SI--GM-3B70 FS","SI--GM-3B70",61,,87,,14,,20,,31,480,"HK1003 -Blackpoint D2 - Rev.0E DD30092021"
1-1599,SI20EK-7-15,"ELECTRICAL ERECTION FUEL GAS COMPONENTS 20EK-",5121,"HK1003-Rev.0E-3",TT_Task,"55902",-,-,-,0,TK_NotStart,19/09/2022,,23/10/2022,,"SI20EK-6-19 FF","SI20EK-6-19","SI20BZK7B27 FS,SI20BAW5C21 FF,SI20BZK7D11# FF,SI20BZK7D11# SS,SI20BZL7E19 FS","SI20BZK7B27,SI20BAW5C21,SI20BZK7D11#,SI20BZK7D11#,SI20BZL7E19",111,,116,,25,,27,,81,600,"HK1003 -Blackpoint D2 - Rev.0E DD30092021"
1-1600,SI20UEN5D50,"CONSTRUCTION FENCING FINISHING WORKS 01UEN",5121,"HK1003-Rev.0E-3",TT_Task,"55902",-,-,-,0,TK_NotStart,05/05/2022,,01/06/2022,,"SI20UEN3D30 FS,SI20UEN5-23 FS","SI20UEN3D30,SI20UEN5-23","SI20UEN5D49 FS","SI20UEN5D49",91,,95,,21,,22,,63,2576,"HK1003 -Blackpoint D2 - Rev.0E DD30092021"
1-1601,SI20UEN5D49,"(RFE) FENCING, FINISHING WORKS 01UEN",5121,"HK1003-Rev.0E-3",TT_FinMile,"55902",-,-,-,0,TK_NotStart,01/06/2022,,01/06/2022,,"SI20UEN5D50 FS","SI20UEN5D50","SI20EK-8-25 FS,SI20BAW5D17 FS","SI20EK-8-25,SI20BAW5D17",95,,95,,22,,22,,67,2576,"HK1003 -Blackpoint D2 - Rev.0E DD30092021"
1-1602,SI20UEN3D30,"PURCHASING, TRANSPORT FENCING, FINISHING WORKS MATERIAL 01UEN",5121,"HK1003-Rev.0E-3",TT_Task,"55902",-,-,-,0,TK_NotStart,07/04/2022,,04/05/2022,,"SI20UEN2D75 FS","SI20UEN2D75","SI20UEN5D50 FS","SI20UEN5D50",87,,91,,20,,21,,56,2576,"HK1003 -Blackpoint D2 - Rev.0E DD30092021"
1-1603,SI20UEN2D75,"(F) FINISHING WORKS DWGS ON SITE RELEASED FOR EXEC. 01UEN",5121,"HK1003-Rev.0E-3",TT_FinMile,"55902",-,-,-,0,TK_NotStart,09/11/2021,,09/11/2021,,"SI20UEN2D80 FS","SI20UEN2D80","SI20UEN3D30 FS","SI20UEN3D30",66,,66,,15,,15,,37,3760,"HK1003 -Blackpoint D2 - Rev.0E DD30092021"
1-1604,SI20UEN2D80,"DETAIL DESIGN FENCING, FINISHING WORKS 01UEN",5121,"HK1003-Rev.0E-3",TT_Task,"55902",-,-,-,0,TK_NotStart,06/10/2021,,09/11/2021,,"SI--UEN2-85 FS,SI20UEN2-90 FS","SI--UEN2-85,SI20UEN2-90","SI20UEN2D75 FS","SI20UEN2D75",61,,66,,14,,15,,32,3760,"HK1003 -Blackpoint D2 - Rev.0E DD30092021"
1-1605,SI20UEN2-75,"(F) CONCRETE STRUCTURE DWGS ON SITE RELEASED FOR EXECUTION 01UEN",5121,"HK1003-Rev.0E-3",TT_FinMile,"55902",-,-,-,0,TK_NotStart,19/01/2022,,19/01/2022,,"SI20UEN2-95 FS,SI20UEN2-90 FS,SI20UEN2-105 FS","SI20UEN2-95,SI20UEN2-90,SI20UEN2-105","SI20UEN5-19.00 FS","SI20UEN5-19.00",76,,76,,17,,17,,46,1248,"HK1003 -Blackpoint D2 - Rev.0E DD30092021"
1-1606,SI20EK-8-99,"COLD COMMISSIONING FUEL GAS METERING SYSTEM FOR GT20",5121,"HK1003-Rev.0E-3",TT_Task,"55902",-,-,-,0,TK_NotStart,24/05/2023,,20/06/2023,,"SI20EK-7-95 FS,SI20EK-8H13 FS,SI20EK-8H14 FS,SI-PM-40 FS,SI20TPM1A8-30 FS,SI20TPM1B8-30 FS,SI-P222-63 FS,SI-P222-80 FS,SI20EK-8-25 FF","SI20EK-7-95,SI20EK-8H13,SI20EK-8H14,SI-PM-40,SI20TPM1A8-30,SI20TPM1B8-30,SI-P222-63,SI-P222-80,SI20EK-8-25","SI20EK-8-46 FS","SI20EK-8-46",146,,150,,34,,35,,97,8,"HK1003 -Blackpoint D2 - Rev.0E DD30092021"
1-1607,SI--C--2B80,"SW ENGINEERING BOP I&C, T3000 DB MERGING, PROXIE GENERATION",5121,"HK1003-Rev.0E-3",TT_Task,"55902",-,-,-,0,TK_NotStart,01/08/2022,,25/09/2022,,"SI--C--2C71 FS,SI--C--2B82 FS,SI--C--2D56 FS","SI--C--2C71,SI--C--2B82,SI--C--2D56","SI--C--2B83 FS,SI--C--2-30# FF","SI--C--2B83,SI--C--2-30#",104,,112,,24,,26,,76,1144,"HK1003 -Blackpoint D2 - Rev.0E DD30092021"
1-1608,SI--P--2-10,"ENGINEERING P&ID'S P-SYSTEMS",5121,"HK1003-Rev.0E-3",TT_Task,"55902",-,-,-,100,TK_Complete,01/01/2021,01/01/2021,18/02/2021,18/02/2021,"SI--P--2-05 FF","SI--P--2-05","SI--C--2C50 FS,SI--P--2-65 FS,SI--P--2-75 FS,SI--P--2-81 SS","SI--C--2C50,SI--P--2-65,SI--P--2-75,SI--P--2-81",21,21,28,28,5,5,6,6,1,,"HK1003 -Blackpoint D2 - Rev.0E DD30092021"
1-1609,SI--C--2-80,"BOP I&C SCOPE CALCULATION",5121,"HK1003-Rev.0E-3",TT_Task,"55902",-,-,-,100,TK_Complete,26/02/2021,26/02/2021,08/04/2021,08/04/2021,"SI--C--2-77 FF,SI-----1-05 FS","SI--C--2-77,SI-----1-05","SI20CFE3-25 FS,SI--C--2-85 FS","SI20CFE3-25,SI--C--2-85",29,29,35,35,6,6,8,8,5,,"HK1003 -Blackpoint D2 - Rev.0E DD30092021"
1-1610,SI--C--2-10,"TECHNICAL CLARIFICATION BOP I&C",5121,"HK1003-Rev.0E-3",TT_Task,"55902",-,-,-,100,TK_Complete,15/01/2021,15/01/2021,25/03/2021,25/03/2021,"SI-----1-05 FS,SI--G--2A05 SS,SI--P--2-05 FF,SI--L--2-05 SS,SI--3331-32 FS,SI-----1-03 SS","SI-----1-05,SI--G--2A05,SI--P--2-05,SI--L--2-05,SI--3331-32,SI-----1-03","SI--C--2C50 SS,SI--C--2-77 FS","SI--C--2C50,SI--C--2-77",23,23,33,33,5,5,7,7,2,,"HK1003 -Blackpoint D2 - Rev.0E DD30092021"
1-1611,SI--C--2B70,"(DF) HANDOVER T3000 DB FOR Precomm./ Fail Safe TEST",5121,"HK1003-Rev.0E-3",TT_FinMile,"55902",-,-,-,0,TK_NotStart,14/01/2022,,14/01/2022,,"SP--CJP2-39 FS,SI--G--2-88 FS,SI--P--2-80 FS,SI--L--2-79 FS,SP--CJJ2-38 FS,SI--C--2B35 FS,SP--CJP2-38 FS,SI--C--2-55 FS,SI--P--2-29 FS,SI--G--2-87 FS,SI--L--2-29 FS","SP--CJP2-39,SI--G--2-88,SI--P--2-80,SI--L--2-79,SP--CJJ2-38,SI--C--2B35,SP--CJP2-38,SI--C--2-55,SI--P--2-29,SI--G--2-87,SI--L--2-29","SI20UBA4B40 FS,SI--C--2-41 FS","SI20UBA4B40,SI--C--2-41",75,,75,,17,,17,,45,1144,"HK1003 -Blackpoint D2 - Rev.0E DD30092021"
1-1612,SI20SAM7-25,"E- AND I&C- ERECTION HVAC SYSTEM 20SA",5121,"HK1003-Rev.0E-3",TT_Task,"55902",-,-,-,0,TK_NotStart,11/11/2022,,22/12/2022,,"SI20SAM6E15 SS,SI20SAM6F15 FF","SI20SAM6E15,SI20SAM6F15","SI20SAM8-11 FS,SI20BZK7D11# FF,SI20BZK7D11# SS","SI20SAM8-11,SI20BZK7D11#,SI20BZK7D11#",118,,124,,27,,29,,85,1128,"HK1003 -Blackpoint D2 - Rev.0E DD30092021"
1-1613,SI20SGC6J15,"ERECTION SPRAY DELUGE SYSTEM UNDER ELECTRICAL MODULES 20UBA76xx/77xx/7410/73xx/7210/7110 20SGC",5121,"HK1003-Rev.0E-3",TT_Task,"55902",-,-,-,0,TK_NotStart,26/09/2022,,09/10/2022,,"SI--SG-2-05 FS,SI20UBA7-104 FS,SI--B--2-68 FS,SI20UBA4-42 FS,SI20UBA7-25 FS,SI20UBA7-15 SS,SI20UBA7-17 FS,SI20BZP7-160 FS,SI20SG-4-41 FS,SI20SG-4-41 FF,SI--B--2-93 FS,SI-P222-65 FS","SI--SG-2-05,SI20UBA7-104,SI--B--2-68,SI20UBA4-42,SI20UBA7-25,SI20UBA7-15,SI20UBA7-17,SI20BZP7-160,SI20SG-4-41,SI20SG-4-41,SI--B--2-93,SI-P222-65","SI20SGC8-25 FS,SI20B--8-50 FS,SI-P222-133 FS,SI-P222-173 FF,SI-P222-135 FS","SI20SGC8-25,SI20B--8-50,SI-P222-133,SI-P222-173,SI-P222-135",112,,114,,26,,26,,82,768,"HK1003 -Blackpoint D2 - Rev.0E DD30092021"
1-1614,SI20QU-2-80,"QUOTATION STAGE SAMPLING CONTAINER 20QU",5121,"HK1003-Rev.0E-3",TT_Task,"55902",-,-,-,100,TK_Complete,30/04/2021,30/04/2021,24/07/2021,24/07/2021,"SI20QU-2-75 FS,SI--3332-76 FS","SI20QU-2-75,SI--3332-76","SI20QU-2-85 FS,SI20QU-2-60 FS","SI20QU-2-85,SI20QU-2-60",38,38,51,51,9,9,11,11,10,,"HK1003 -Blackpoint D2 - Rev.0E DD30092021"
1-1615,SI20QU-2-75,"PREPARATION RFQ SAMPLING CONTAINER 20QU",5121,"HK1003-Rev.0E-3",TT_Task,"55902",-,-,-,100,TK_Complete,23/04/2021,23/04/2021,29/04/2021,29/04/2021,"SI--3331-32 FS,SI20QU-2-40 FS","SI--3331-32,SI20QU-2-40","SI20QU-2-80 FS,SI20QU-2-60 FS","SI20QU-2-80,SI20QU-2-60",37,37,38,38,8,8,9,9,9,,"HK1003 -Blackpoint D2 - Rev.0E DD30092021"
1-1616,SI20QU-2-05,"BASIC DESIGN / PREPARATION P&ID'S DOSING CONTAINER 20QU",5121,"HK1003-Rev.0E-3",TT_Task,"55902",-,-,-,100,TK_Complete,26/03/2021,26/03/2021,22/04/2021,22/04/2021,"SI20QC-2-05 SS,SI-----1-03 SS","SI20QC-2-05,SI-----1-03","SI20QU-2-40 FS","SI20QU-2-40",33,33,37,37,7,7,8,8,7,,"HK1003 -Blackpoint D2 - Rev.0E DD30092021"
1-1617,SI20LCA6A45,"INSULATION PIPES / VALVES CONDENSATE SYSTEM 20LCA",5121,"HK1003-Rev.0E-3",TT_Task,"55902",-,-,-,0,TK_NotStart,19/01/2023,,22/02/2023,,"SI20LCA6A15 FS,SI-P2I-15 FS","SI20LCA6A15,SI-P2I-15","SI20LCA8M10 FS,SI20LAC8B10 FS,SI20LD8B110 FS,SI20LCA7A15 FF,SI20--P6-75 FS,SI20LCA8M10 SS,SI20---6A15# FF","SI20LCA8M10,SI20LAC8B10,SI20LD8B110,SI20LCA7A15,SI20--P6-75,SI20LCA8M10,SI20---6A15#",128,,133,,30,,31,,88,240,"HK1003 -Blackpoint D2 - Rev.0E DD30092021"
1-1618,SI--UR-2-40,"(MS2) DESIGN LOAD DATA, DIMENSIONS COOLING TOWER AVAILABLE",5121,"HK1003-Rev.0E-3",TT_FinMile,"55902",-,-,-,100,TK_Complete,20/12/2020,20/12/2020,20/12/2020,20/12/2020,"SI--PAD2-86 FS","SI--PAD2-86","SI--UR-2-44 FS","SI--UR-2-44",20,20,20,20,4,4,4,4,1,,"HK1003 -Blackpoint D2 - Rev.0E DD30092021"
1-1619,SI20BAA4-40,"(OTD-OS) ON SITE (ET8) IPB 20BAA",5121,"HK1003-Rev.0E-3",TT_FinMile,"55902",-,-,-,0,TK_NotStart,29/08/2022,,29/08/2022,,"SI20BAA4-25 FS","SI20BAA4-25","SI20BAA7-15 FS,SI20BAA7-66 FS","SI20BAA7-15,SI20BAA7-66",108,,108,,25,,25,,79,352,"HK1003 -Blackpoint D2 - Rev.0E DD30092021"
1-1620,SI--HA-2-86,"TECHNIAL CLARIFICATION WITH HRSG SUPPLIERS",5121,"HK1003-Rev.0E-3",TT_Task,"55902",-,-,-,100,TK_Complete,18/12/2020,18/12/2020,14/01/2021,14/01/2021,"SI--HA-2-83 FS,SI--HA-2-87 FS,SI--HA-2-88 FS,SI--HA-2-81 FS","SI--HA-2-83,SI--HA-2-87,SI--HA-2-88,SI--HA-2-81","SI--HA-2-90 FS,SI--HA-2-05 FF","SI--HA-2-90,SI--HA-2-05",19,19,23,23,4,4,5,5,1,,"HK1003 -Blackpoint D2 - Rev.0E DD30092021"
1-1621,SI--BZP2-15,"BASIC DESIGN / SPECIFICATION CABLE SUPPORT SYSTEM BZP",5121,"HK1003-Rev.0E-3",TT_Task,"55902",-,-,-,100,TK_Complete,16/06/2021,16/06/2021,13/07/2021,13/07/2021,"SI--PM-2-30 FS,SI--3331-32 FS,SI--B--2-03 FS,SI--3332-26 FS,SI-----1-03 SS","SI--PM-2-30,SI--3331-32,SI--B--2-03,SI--3332-26,SI-----1-03","SI--BZP2-00# SS,SI--BZP2-30 FS,SI--BZP2-88 FS,SI--BZP2-93 FS,SI--BZP2-14 FF,SI--BZP2-14 FS","SI--BZP2-00#,SI--BZP2-30,SI--BZP2-88,SI--BZP2-93,SI--BZP2-14,SI--BZP2-14",45,45,49,49,10,10,11,11,17,,"HK1003 -Blackpoint D2 - Rev.0E DD30092021"
1-1622,SI20BAC4-25,"TRANSPORT GEN. CIRCUIT BREAKER 20BAC",5121,"HK1003-Rev.0E-3",TT_Task,"55902",-,-,-,0,TK_NotStart,20/06/2022,,14/08/2022,,"SI20BAC3B80 FS","SI20BAC3B80","SI20BAC4-40 FS","SI20BAC4-40",98,,106,,22,,24,,70,352,"HK1003 -Blackpoint D2 - Rev.0E DD30092021"
1-1623,SI20BAC3-25,"DETAIL DESIGN / MANUFACTURING / SHOP TEST GEN. CIRCUIT BREAKER 20BAC",5121,"HK1003-Rev.0E-3",TT_Task,"55902",-,-,-,26,TK_Active,16/07/2021,16/07/2021,28/04/2022,,"SI--BAC2-85 FS","SI--BAC2-85","SI20BAC3-70 FS","SI20BAC3-70",49,49,90,,11,11,21,,22,352,"HK1003 -Blackpoint D2 - Rev.0E DD30092021"
1-1624,SI20MAJ4-25,"TRANSPORT AIR REMOVAL SYSTEM 20MAJ",5121,"HK1003-Rev.0E-3",TT_Task,"55902",-,-,-,0,TK_NotStart,15/03/2022,,09/05/2022,,"SP20MAJ3-80 FS","SP20MAJ3-80","SI20MAJ4-40 FS","SI20MAJ4-40",84,,92,,19,,21,,53,1184,"HK1003 -Blackpoint D2 - Rev.0E DD30092021"
1-1625,SI20MAG4-25,"TRANSPORT ST CONDENSER 20MAG",5121,"HK1003-Rev.0E-3",TT_Task,"55902",-,-,-,0,TK_NotStart,23/03/2022,,17/05/2022,,"SI--LOG4-30 FS,SP20MAG3-81 FS","SI--LOG4-30,SP20MAG3-81","SI20MAG6-00 FS,SI20PAH4-42 FS,SP20MAG4B41 FS","SI20MAG6-00,SI20PAH4-42,SP20MAG4B41",85,,93,,19,,21,,53,144,"HK1003 -Blackpoint D2 - Rev.0E DD30092021"
1-1626,SI20SGM8-25,"COLD COMMISSIONING FF INERTGAS SYSTEM IN 20UBA76xx/77xx/7410/73xx/7210/7110 SGM INSIDE CONTAINERS",5121,"HK1003-Rev.0E-3",TT_Task,"55902",-,-,-,0,TK_NotStart,14/02/2023,,20/02/2023,,"SI20SGM8-10 FS,SI-PM-40 FS,SI20UBA8-12 FS,SI20SGC8-25 SS","SI20SGM8-10,SI-PM-40,SI20UBA8-12,SI20SGC8-25","SI20B--8-50 FS,SI20MB-9-15 FS","SI20B--8-50,SI20MB-9-15",132,,133,,30,,31,,90,408,"HK1003 -Blackpoint D2 - Rev.0E DD30092021"
1-1627,SI--3331-33,"TCC INSURANCE FOR HRSG PHASE 1 AVAILABLE",5121,"HK1003-Rev.0E-3",TT_Mile,"55902",-,-,-,100,TK_Complete,05/12/2020,05/12/2020,05/12/2020,05/12/2020,"SI--3331-34 SS,SI--HA-2-81 SS,SI--HA-2-82 FS","SI--3331-34,SI--HA-2-81,SI--HA-2-82","SI--HA-2-88 FS","SI--HA-2-88",18,18,18,18,4,4,4,4,1,,"HK1003 -Blackpoint D2 - Rev.0E DD30092021"
1-1628,SI20HB-4E40,"(OTD-OS) ON SITE INLET DUCT HRSG20",5121,"HK1003-Rev.0E-3",TT_FinMile,"55902",-,-,-,0,TK_NotStart,06/02/2022,,06/02/2022,,"SI20HB-4E25 FS","SI20HB-4E25","SI20HB-6E27 FS,SI20HB-6E33 FS,SI20HB-6E29 FS,SI20HB-8-18 FS","SI20HB-6E27,SI20HB-6E33,SI20HB-6E29,SI20HB-8-18",79,,79,,18,,18,,48,920,"HK1003 -Blackpoint D2 - Rev.0E DD30092021"
1-1629,SI20HB-3E80,"(RFS) READY FOR SHIPMENT INLET DUCT HRSG20",5121,"HK1003-Rev.0E-3",TT_FinMile,"55902",-,-,-,0,TK_NotStart,02/01/2022,,02/01/2022,,"SI20HB-4B15 FS","SI20HB-4B15","SI20HB-4E25 FS","SI20HB-4E25",74,,74,,17,,17,,44,920,"HK1003 -Blackpoint D2 - Rev.0E DD30092021"
1-1630,SI20HB-4E25,"TRANSPORT INLET DUCT HRSG20",5121,"HK1003-Rev.0E-3",TT_Task,"55902",-,-,-,0,TK_NotStart,03/01/2022,,06/02/2022,,"SI20HB-3E80 FS","SI20HB-3E80","SI20HB-4E40 FS","SI20HB-4E40",74,,79,,17,,18,,44,920,"HK1003 -Blackpoint D2 - Rev.0E DD30092021"
1-1631,SI20EK-7-95,"ATEX - GAS SYSTEM 20EKG",5121,"HK1003-Rev.0E-3",TT_FinMile,"55902",-,-,-,0,TK_NotStart,20/05/2023,,20/05/2023,,"SI20EK-7-25 FS,SI20EK-8H14 FS","SI20EK-7-25,SI20EK-8H14","SI20EK-8-99 FS","SI20EK-8-99",146,,146,,34,,34,,97,32,"HK1003 -Blackpoint D2 - Rev.0E DD30092021"
1-1632,SI--BZL4-40,"(OTD-OS) ON SITE LIGHTING & SMALL POWER BZL",5121,"HK1003-Rev.0E-3",TT_FinMile,"55902",-,-,-,0,TK_NotStart,26/07/2022,,26/07/2022,,"SI--BZL4-25 FS","SI--BZL4-25","SI20BZL7F15 FS,SI20BZL7A15 FS,SI20BZL7A17 FS,SI20LAC6B18 FS,SI20BZL7C15 FS,SI20BZL7E17 FS,SI20BZL7E18 FS,SI20BZL7E16 FS,SI20BZL7A15 FF,SI20BZL7E15 FS,SI20BZL7A17 FF,SI20BZL7F17 FS,SI20BZL7G15 FS,SI20BZL7-38 FS,SI20BZL7A18 FS,SI20BZL7A19 FS","SI20BZL7F15,SI20BZL7A15,SI20BZL7A17,SI20LAC6B18,SI20BZL7C15,SI20BZL7E17,SI20BZL7E18,SI20BZL7E16,SI20BZL7A15,SI20BZL7E15,SI20BZL7A17,SI20BZL7F17,SI20BZL7G15,SI20BZL7-38,SI20BZL7A18,SI20BZL7A19",103,,103,,24,,24,,75,240,"HK1003 -Blackpoint D2 - Rev.0E DD30092021"
1-1633,SI20UMC3D30,"PURCHASING, TRANSPORT FINISHING WORKS MATERIAL 20UMC",5121,"HK1003-Rev.0E-3",TT_Task,"55902",-,-,-,0,TK_NotStart,03/04/2022,,11/06/2022,,"SI20UMC2D25 FS","SI20UMC2D25","SI20UMC5D35 FS","SI20UMC5D35",87,,97,,20,,22,,55,1024,"HK1003 -Blackpoint D2 - Rev.0E DD30092021"
1-1634,SI20LBH4D40,"(OTD-OS) ON SITE BLOW DOWN TANK 20LBH",5121,"HK1003-Rev.0E-3",TT_FinMile,"55902",-,-,-,0,TK_NotStart,08/04/2022,,08/04/2022,,"SI20LBH4D25 FS","SI20LBH4D25","SI20LBH6D15 FS,SI20LBH6D16 FS","SI20LBH6D15,SI20LBH6D16",87,,87,,20,,20,,56,456,"HK1003 -Blackpoint D2 - Rev.0E DD30092021"
1-1635,SI--HA-2E65,"(DF) INPUT FOR M2 HRSG",5121,"HK1003-Rev.0E-3",TT_FinMile,"55902",-,-,-,100,TK_Complete,12/02/2021,12/02/2021,12/02/2021,12/02/2021,"SI--HA-2A55 FS,SI--HA-2E20 SS,SI--HA-2A11 FS","SI--HA-2A55,SI--HA-2E20,SI--HA-2A11","SI---1P2A10 SS","SI---1P2A10",27,27,27,27,6,6,6,6,4,,"HK1003 -Blackpoint D2 - Rev.0E DD30092021"
1-1636,SI--SG-2-50,"FINAL FIRE PROTECTION CONCEPT & ESCAPE ROUTE AND FIRE PROTECTION DWGS AVAILABLE",5121,"HK1003-Rev.0E-3",TT_Mile,"55902",-,-,-,100,TK_Complete,04/07/2021,04/07/2021,04/07/2021,04/07/2021,"SI--SG-2-40 FS","SI--SG-2-40","SP20SGJ3-25 FS,SI20SGY3A25 FS,SI20SGA3-26 FS,SI20SG-3-25 FS,SI--SGA3A25 FS,SI20SGA3-25 FS,SI--SG-2-85 FS,SI20SGY3A25 SS,SI20SG-3-25 SS,SI20SGA3-25 SS,SI--SG-2-85 SS,SI--SGA3A25 SS,SI--SG-2-95 FS","SP20SGJ3-25,SI20SGY3A25,SI20SGA3-26,SI20SG-3-25,SI--SGA3A25,SI20SGA3-25,SI--SG-2-85,SI20SGY3A25,SI20SG-3-25,SI20SGA3-25,SI--SG-2-85,SI--SGA3A25,SI--SG-2-95",48,48,48,48,11,11,11,11,20,,"HK1003 -Blackpoint D2 - Rev.0E DD30092021"
1-1637,SI--L--2-50,"(DF) MECH. ENGINEERING / PLANT LAYOUT L SYSTEMS",5121,"HK1003-Rev.0E-3",TT_FinMile,"55902",-,-,-,100,TK_Complete,20/06/2021,20/06/2021,20/06/2021,20/06/2021,"SI--L--2-30 FS","SI--L--2-30","SI--CKA2-00 FF,SI--2222-50 SS","SI--CKA2-00,SI--2222-50",46,46,46,46,10,10,10,10,18,,"HK1003 -Blackpoint D2 - Rev.0E DD30092021"
1-1638,SI--L--2-30,"REVISION P&ID'S AFTER 3D DRV L SYSTEMS",5121,"HK1003-Rev.0E-3",TT_Task,"55902",-,-,-,100,TK_Complete,12/05/2021,12/05/2021,20/06/2021,20/06/2021,"SI--L--2-80 FS","SI--L--2-80","SI--L--2-50 FS","SI--L--2-50",40,40,46,46,9,9,10,10,12,,"HK1003 -Blackpoint D2 - Rev.0E DD30092021"
1-1639,SI--P--2-28,"DATA MANAGEMENT P SYSTEMS",5121,"HK1003-Rev.0E-3",TT_Task,"55902",-,-,-,100,TK_Complete,05/05/2021,05/05/2021,06/07/2021,06/07/2021,"SI--P--2-65 FS","SI--P--2-65","SI--P--2-78 FS,SI--P--2-70 FS","SI--P--2-78,SI--P--2-70",39,39,48,48,9,9,11,11,11,,"HK1003 -Blackpoint D2 - Rev.0E DD30092021"
1-1640,SI--P--2-75,"DESIGN REVIEW INCL. SIL-STUDY P-SYSTEMS",5121,"HK1003-Rev.0E-3",TT_Task,"55902",-,-,-,100,TK_Complete,31/03/2021,31/03/2021,04/05/2021,04/05/2021,"SI--L--2-75 SS,SI--P--2-10 FS","SI--L--2-75,SI--P--2-10","SI--P--2-79 FS,SI--P--2-65 FS,SI--P--2-77 FF,SI--P--2-70# FF","SI--P--2-79,SI--P--2-65,SI--P--2-77,SI--P--2-70#",34,34,39,39,8,8,9,9,7,,"HK1003 -Blackpoint D2 - Rev.0E DD30092021"
1-1641,SI20SMM3-26,"FABRICATION DESIGN/ MANUFACTURING / SHOP TEST / TRANSPORT CRANE 20SMM01/02 FOR 20UMC",5121,"HK1003-Rev.0E-3",TT_Task,"55902",-,-,-,0,TK_NotStart,03/10/2021,,12/01/2022,,"SI20SMM3-25 FS,SI--SMM2-85 FS","SI20SMM3-25,SI--SMM2-85","SI20SMM3-70 FS","SI20SMM3-70",61,,75,,14,,17,,31,128,"HK1003 -Blackpoint D2 - Rev.0E DD30092021"
1-1642,SI20USC2-12,"PLANT DESIGN INPUT SCA",5121,"HK1003-Rev.0E-3",TT_Mile,"55902",-,-,-,100,TK_Complete,04/02/2021,04/02/2021,04/02/2021,04/02/2021,"SI--G--2A05 FS,SI-----1-03 SS","SI--G--2A05,SI-----1-03","SI20SCA2-86 FS,SI20SCA2-75 FS,SI20SCA2-66 SS","SI20SCA2-86,SI20SCA2-75,SI20SCA2-66",26,26,26,26,6,6,6,6,4,,"HK1003 -Blackpoint D2 - Rev.0E DD30092021"
1-1643,SI20GM-6H18,"ERECTION PIPES DRAINAGE SYSTEM 00GM FROM STEAM TURBINE / HRSG TO UBH02",5121,"HK1003-Rev.0E-3",TT_Task,"55902",-,-,-,0,TK_NotStart,20/08/2022,,30/09/2022,,"SI20GM-6E40 FS,SI20UBH5E48 FS,SI---5P6A09 FS,SI20MAG6-40 FS,SI--G--2-50 FS","SI20GM-6E40,SI20UBH5E48,SI---5P6A09,SI20MAG6-40,SI--G--2-50","SI20GM-8F10 FS,SI20-6-16# FF,SI20-6-16# SS","SI20GM-8F10,SI20-6-16#,SI20-6-16#",107,,112,,24,,26,,78,1616,"HK1003 -Blackpoint D2 - Rev.0E DD30092021"
1-1644,SI20LBB6J49,"INSULATION PIPES / VALVES FOR REHEAT SYSTEM 20LBB-LBC80",5121,"HK1003-Rev.0E-3",TT_Task,"55902",-,-,-,0,TK_NotStart,04/03/2023,,07/04/2023,,"SI20LBB6J17 FS,SI20LBB6J73 FS,SI-P2I-15 FS","SI20LBB6J17,SI20LBB6J73,SI-P2I-15","SI20LBA8J10 FS,SI20LBA8H10 FS,SI20LBG8A10 FS,SI20LBB8J11 FS,SI20LBB7J17 FF,SI20--P6-75 FS,SI20---6A15# FF","SI20LBA8J10,SI20LBA8H10,SI20LBG8A10,SI20LBB8J11,SI20LBB7J17,SI20--P6-75,SI20---6A15#",135,,139,,31,,32,,92,136,"HK1003 -Blackpoint D2 - Rev.0E DD30092021"
1-1645,SI--BRU8-21,"COMMISSIONING 20BTA/BTL",5121,"HK1003-Rev.0E-3",TT_Task,"55902",-,-,-,0,TK_NotStart,14/02/2023,,20/02/2023,,"SI--C--2B83 FS,SI20BFA8-25 FF,SI--BRU8-22 FS,SI--C--2-41 FS,SI20BU-8-25 SS,SI-PM-40 FS,SI20UBA8G29 SS","SI--C--2B83,SI20BFA8-25,SI--BRU8-22,SI--C--2-41,SI20BU-8-25,SI-PM-40,SI20UBA8G29","SI20CPA8-25 SS,SI20CPD8-36 SS,SI20GHD8A25 FS,SI20SGC8-37 FS,SI20B--8-50 FS,SI20CR-8-25 FS,SI20BUK8-50 FS","SI20CPA8-25,SI20CPD8-36,SI20GHD8A25,SI20SGC8-37,SI20B--8-50,SI20CR-8-25,SI20BUK8-50",132,,133,,30,,31,,90,16,"HK1003 -Blackpoint D2 - Rev.0E DD30092021"
1-1646,SI20UBX3C25,"DETAIL DESIGN & FABRICATION DESIGN/FABRICATION/TRANSPORT CLADDING 20UBX",5121,"HK1003-Rev.0E-3",TT_Task,"55902",-,-,-,0,TK_NotStart,08/07/2022,,01/09/2022,,"SI--5552-25 FS,SI20UBX2C-55 FS,SI--5552-91 FS,SI--5552-90 FS","SI--5552-25,SI20UBX2C-55,SI--5552-91,SI--5552-90","SI20UBX5C10 FS","SI20UBX5C10",100,,108,,23,,25,,73,520,"HK1003 -Blackpoint D2 - Rev.0E DD30092021"
1-1647,SI20MKA9-40&,"1ST. SYNCHRONIZATION GT GENERATOR 20MKA",5121,"HK1003-Rev.0E-3",TT_FinMile,"55902",-,-,-,0,TK_NotStart,02/07/2023,,02/07/2023,,"","","SI20MKA9-42 FS","SI20MKA9-42",152,,152,,35,,35,,99,0,"HK1003 -Blackpoint D2 - Rev.0E DD30092021"
1-1648,SI20QC-2-05,"BASIC DESIGN / PREPARATION P&ID'S DOSING CONTAINER QC",5121,"HK1003-Rev.0E-3",TT_Task,"55902",-,-,-,100,TK_Complete,26/03/2021,26/03/2021,22/04/2021,22/04/2021,"SI-----1-03 SS,SI-----1-05 FS","SI-----1-03,SI-----1-05","SI20QU-2-05 SS,SI20QC-2-40 FS","SI20QU-2-05,SI20QC-2-40",33,33,37,37,7,7,8,8,7,,"HK1003 -Blackpoint D2 - Rev.0E DD30092021"
1-1649,SI20SGA4-25,"TRANSPORT FIRE FIGHTING INDOOR HYDRANTS SGA 20UMC",5121,"HK1003-Rev.0E-3",TT_Task,"55902",-,-,-,0,TK_NotStart,22/05/2022,,16/07/2022,,"SI20SGA3-80 FS","SI20SGA3-80","SI20SGA4-40 FS","SI20SGA4-40",94,,102,,21,,23,,66,720,"HK1003 -Blackpoint D2 - Rev.0E DD30092021"
1-1650,SI20SGA3-25,"DETAIL DESIGN / MANUFACTURING FIRE FIGHTING INDOOR HYRDANTS SGA 20UMC",5121,"HK1003-Rev.0E-3",TT_Task,"55902",-,-,-,11,TK_Active,10/09/2021,10/09/2021,17/03/2022,,"SI--SG-2-18 FS,SI--SG-2-85 FS,SI--SG-2-50 FS,SI--SG-2-50 SS,SI--SG-2-95 FS","SI--SG-2-18,SI--SG-2-85,SI--SG-2-50,SI--SG-2-50,SI--SG-2-95","SI20SGA3-70 FS","SI20SGA3-70",57,57,84,,13,13,19,,29,1016,"HK1003 -Blackpoint D2 - Rev.0E DD30092021"
1-1651,SI--HA-2E20,"(DF) BASIC DESIGN PIPE ROUTING FOR HRSG SYSTEMS LAB/LBA10/LBB/C",5121,"HK1003-Rev.0E-3",TT_FinMile,"55902",-,-,-,100,TK_Complete,12/02/2021,12/02/2021,12/02/2021,12/02/2021,"SI--HA-2A56 FS","SI--HA-2A56","SI--HA-2E65 SS,SI---1P2A10 SS","SI--HA-2E65,SI---1P2A10",27,27,27,27,6,6,6,6,4,,"HK1003 -Blackpoint D2 - Rev.0E DD30092021"
1-1652,SI20PAH2-80,"QUOTATION STAGE CONDENSER TUBE CLEANING SYSTEM 20PAH",5121,"HK1003-Rev.0E-3",TT_Task,"55902",-,-,-,100,TK_Complete,11/02/2021,11/02/2021,14/05/2021,14/05/2021,"SI--P--2-45 FF,SI20PAH2-75 FS,SI--3332-76 FS","SI--P--2-45,SI20PAH2-75,SI--3332-76","SI20PAH2-85 FS","SI20PAH2-85",27,27,40,40,6,6,9,9,4,,"HK1003 -Blackpoint D2 - Rev.0E DD30092021"
1-1653,SI--BAA2-80,"QUOTATION STAGE IPB BAA",5121,"HK1003-Rev.0E-3",TT_Task,"55902",-,-,-,100,TK_Complete,19/03/2021,19/03/2021,01/05/2021,01/05/2021,"SI--BAA2-75 FS","SI--BAA2-75","SI--BAA2-60 FS,SI--BAA2-85 FS,SI--BAA2-86 FS,SI--BAA2-21 FS","SI--BAA2-60,SI--BAA2-85,SI--BAA2-86,SI--BAA2-21",32,32,39,39,7,7,9,9,6,,"HK1003 -Blackpoint D2 - Rev.0E DD30092021"
1-1654,SI--BAA2-21,"DWGS AVAILABLE IPB BAA",5121,"HK1003-Rev.0E-3",TT_Mile,"55902",-,-,-,100,TK_Complete,02/05/2021,02/05/2021,02/05/2021,02/05/2021,"SI-----1-03 FS,SI--UB-2-35 FS,SI--BAA2-80 FS","SI-----1-03,SI--UB-2-35,SI--BAA2-80","SI--BAA2-86 FS","SI--BAA2-86",39,39,39,39,9,9,9,9,10,,"HK1003 -Blackpoint D2 - Rev.0E DD30092021"
1-1655,SP--CJJ3-10,"ARRIVAL ST I&C CABINETS AT ELECTRICAL MODULES MANUFACTURER",5121,"HK1003-Rev.0E-3",TT_Mile,"55902",-,-,-,0,TK_NotStart,17/12/2021,,17/12/2021,,"SP--CJJ3-25 FS","SP--CJJ3-25","SI20UBA4G62 FS","SI20UBA4G62",71,,71,,16,,16,,42,1320,"HK1003 -Blackpoint D2 - Rev.0E DD30092021"
1-1656,SP--CJJ3-25,"ST I&C DESIGN/PROCUREMENT/MANUFACTURING CABINETS",5121,"HK1003-Rev.0E-3",TT_Task,"55902",-,-,-,12,TK_Active,20/09/2021,20/09/2021,10/12/2021,,"SI--3331-35 FS,SI-----1-04 SS,SI20CHY3-25 SS,SI--C--2C55 FS","SI--3331-35,SI-----1-04,SI20CHY3-25,SI--C--2C55","SP--CJJ2-37 FS,SP--CJJ3-10 FS","SP--CJJ2-37,SP--CJJ3-10",59,59,70,,13,13,16,,29,1024,"HK1003 -Blackpoint D2 - Rev.0E DD30092021"
1-1657,SI20MA-6D80,"REASSEMBLY AFTER LUBE OIL FLUSHING MA",5121,"HK1003-Rev.0E-3",TT_Task,"55902",-,-,-,0,TK_NotStart,14/03/2023,,17/03/2023,,"SI20MAV6-55 FS","SI20MAV6-55","SI20MA-6D70 FS","SI20MA-6D70",136,,136,,31,,31,,92,32,"HK1003 -Blackpoint D2 - Rev.0E DD30092021"
1-1658,SI20MA-6D70,"CLOSING BEARING PEDESTALS (READY FOR OPERATION) MA",5121,"HK1003-Rev.0E-3",TT_Task,"55902",-,-,-,0,TK_NotStart,18/03/2023,,21/03/2023,,"SI20MA-6D80 FS","SI20MA-6D80","SI20MA-6D45 FF,SI20MAL8-10 FS,SI20MAV8-10 FS,SI20MAD8-10 FS,SI20MAX8-10 FS,SI20MAJ8-10 FS,SI20MAW8-10 FS,SI20MAN8-10 FS,SI20MAG8-10 FS,SI20MA-8-10 FS,SI20MA-8B25 FS","SI20MA-6D45,SI20MAL8-10,SI20MAV8-10,SI20MAD8-10,SI20MAX8-10,SI20MAJ8-10,SI20MAW8-10,SI20MAN8-10,SI20MAG8-10,SI20MA-8-10,SI20MA-8B25",137,,137,,31,,32,,93,32,"HK1003 -Blackpoint D2 - Rev.0E DD30092021"
1-1659,SI20MA-6D45,"INSTALLATION ST INSULATION MA",5121,"HK1003-Rev.0E-3",TT_Task,"55902",-,-,-,0,TK_NotStart,08/02/2023,,21/03/2023,,"SI20MA-6D70 FF,SI20MA-6D81 FS","SI20MA-6D70,SI20MA-6D81","SI20MAL8-10 FS,SI20MAV8-10 FS,SI20MAD8-10 FS,SI20MA-8-10 FS,SI20MAX8-10 FS,SI20MAJ8-10 FS,SI20MAW8-10 FS,SI20MAN8-10 FS,SI20MAG8-10 FS,SI20MA-9-05 FS,SI20MA-8B25 FS,SI20MA-6B15# FF,SI20MA-6-66 FS","SI20MAL8-10,SI20MAV8-10,SI20MAD8-10,SI20MA-8-10,SI20MAX8-10,SI20MAJ8-10,SI20MAW8-10,SI20MAN8-10,SI20MAG8-10,SI20MA-9-05,SI20MA-8B25,SI20MA-6B15#,SI20MA-6-66",131,,137,,30,,32,,90,32,"HK1003 -Blackpoint D2 - Rev.0E DD30092021"
1-1660,SP--MPB2E55,"FINAL ELECTRICAL LOAD DATA (VEL) GT ENCLOSURE MPB / SAM",5121,"HK1003-Rev.0E-3",TT_Mile,"55902",-,-,-,100,TK_Complete,18/06/2021,18/06/2021,18/06/2021,18/06/2021,"SI-----1-04 FS,SP--MPB2-05 FS","SI-----1-04,SP--MPB2-05","SP--B--2-52 SS","SP--B--2-52",45,45,45,45,10,10,10,10,18,,"HK1003 -Blackpoint D2 - Rev.0E DD30092021"
1-1661,SP--MPB2E70,"I&C INPUT (P&ID, DESCR.) GT ENCLOSURE MPB / SAM",5121,"HK1003-Rev.0E-3",TT_Mile,"55902",-,-,-,100,TK_Complete,07/05/2021,07/05/2021,07/05/2021,07/05/2021,"SP20MPB2A92 FS","SP20MPB2A92","SP--MB-2A55 FS,SP--MPB2-05 FS","SP--MB-2A55,SP--MPB2-05",39,39,39,39,9,9,9,9,11,,"HK1003 -Blackpoint D2 - Rev.0E DD30092021"
1-1662,SP20MBR2-05,"P&I DIAGRAMS DIFFUSER 20MBR",5121,"HK1003-Rev.0E-3",TT_Mile,"55902",-,-,-,100,TK_Complete,20/02/2021,20/02/2021,20/02/2021,20/02/2021,"SP20MBR2A80 FS","SP20MBR2A80","SI--M--2D20 SS","SI--M--2D20",29,29,29,29,6,6,6,6,5,,"HK1003 -Blackpoint D2 - Rev.0E DD30092021"
1-1663,SP20MBR2-95,"LAYOUT DRAWING DIFFUSER 20MBR",5121,"HK1003-Rev.0E-3",TT_Mile,"55902",-,-,-,100,TK_Complete,07/07/2021,07/07/2021,07/07/2021,07/07/2021,"SP20MBR2A85 SS","SP20MBR2A85","SI--UMX2-60 FS","SI--UMX2-60",48,48,48,48,11,11,11,11,21,,"HK1003 -Blackpoint D2 - Rev.0E DD30092021"
1-1664,SP20MBR2A70,"I&C INPUT (P&ID, DESCR.) DIFFUSER 20MBR",5121,"HK1003-Rev.0E-3",TT_Mile,"55902",-,-,-,100,TK_Complete,01/06/2021,01/06/2021,01/06/2021,01/06/2021,"SP20MBR2A85 FS,SI-----1-04 SS","SP20MBR2A85,SI-----1-04","SI--C--2C55 FS","SI--C--2C55",43,43,43,43,10,10,10,10,15,,"HK1003 -Blackpoint D2 - Rev.0E DD30092021"
1-1665,SP20MBL2-85,"CONTRACT INTO FORCE AIR INTAKE SYSTEM MBL",5121,"HK1003-Rev.0E-3",TT_Mile,"55902",-,-,-,100,TK_Complete,03/05/2021,03/05/2021,03/05/2021,03/05/2021,"SI--3332-76 SS,SP20MBL2-81 FS,SI-----1-05 FS","SI--3332-76,SP20MBL2-81,SI-----1-05","SP20MBL2-70 FS,SP20MBL2-95 FS,SP20MBL2-60 FS,SP20MBL2-87 FS,SP20MBL3-25 SS,SP20MBL3-25 FS,SP20MBL2-98 FS,SP20MBL2-101 FS,SP20MBL2-102 FS","SP20MBL2-70,SP20MBL2-95,SP20MBL2-60,SP20MBL2-87,SP20MBL3-25,SP20MBL3-25,SP20MBL2-98,SP20MBL2-101,SP20MBL2-102",39,39,39,39,9,9,9,9,11,,"HK1003 -Blackpoint D2 - Rev.0E DD30092021"
1-1666,SP20MBL2-10,"SYSTEM DESCRIPTION AIR INTAKE MBL",5121,"HK1003-Rev.0E-3",TT_Mile,"55902",-,-,-,100,TK_Complete,26/04/2021,26/04/2021,26/04/2021,26/04/2021,"SP20MBL2-81 SS,SI-----1-04 SS","SP20MBL2-81,SI-----1-04","SI--M--2D20 SS,SI---4P2A10 SS","SI--M--2D20,SI---4P2A10",38,38,38,38,8,8,8,8,10,,"HK1003 -Blackpoint D2 - Rev.0E DD30092021"
1-1667,SI20UBA5-7,"WORK PREPARATION / EXCAVATION / PILE TRIMMING / PLATE WELDING 20UBA7xxx",5121,"HK1003-Rev.0E-3",TT_Task,"55902",-,-,-,0,TK_NotStart,02/02/2022,,25/02/2022,,"SI--UBA2-75 FS,SI20UMC5B95 FS,SI20UMC5B15 SS,SI-----5-21& FS,SI-----5-20 FS,SI-P222-84 FS,SI-P222-128 FS,SI--UBA2-108 FS","SI--UBA2-75,SI20UMC5B95,SI20UMC5B15,SI-----5-21&,SI-----5-20,SI-P222-84,SI-P222-128,SI--UBA2-108","SI20UBA5-12 FS,SI-P222-131# FF,SI-P222-131# SS","SI20UBA5-12,SI-P222-131#,SI-P222-131#",78,,81,,18,,19,,47,424,"HK1003 -Blackpoint D2 - Rev.0E DD30092021"
1-1668,SI20UBA3B25,"FABRICATION DESIGN/FABRICATION/TRANSPORT STEEL STRUC.20UBA7xxx",5121,"HK1003-Rev.0E-3",TT_Task,"55902",-,-,-,0,TK_NotStart,20/04/2022,,26/07/2022,,"SI--5552-25 SS,SI--UBA2D75 FS,SI--UBA2-85 FS,SI--5552-91 FS,SI--5552-90 FS","SI--5552-25,SI--UBA2D75,SI--UBA2-85,SI--5552-91,SI--5552-90","SI20UBA5B61 FS,SI20UBA5B10 FS,SI20UBA3B27 SS","SI20UBA5B61,SI20UBA5B10,SI20UBA3B27",89,,103,,20,,24,,58,592,"HK1003 -Blackpoint D2 - Rev.0E DD30092021"
1-1669,SI20LAC6B40,"(RFP) READY FOR PIPE CONNECTION FEEDWATER PUMPS 20LAC",5121,"HK1003-Rev.0E-3",TT_FinMile,"55902",-,-,-,0,TK_NotStart,04/07/2022,,04/07/2022,,"SI20LAC6B15 SS","SI20LAC6B15","SI20PGB6H17 FF,SI20LAB6H15 FS,SI20LBG6A15 FS,SI20BZP7-135 FS,SI20BZL7C15 FS,SI20LCA6A15 FS","SI20PGB6H17,SI20LAB6H15,SI20LBG6A15,SI20BZP7-135,SI20BZL7C15,SI20LCA6A15",100,,100,,23,,23,,72,536,"HK1003 -Blackpoint D2 - Rev.0E DD30092021"
1-1670,SI--5552-64,"FINAL AND COMPLETE ROOM NUMBERS ASSIGNED TO EQUIPMENT",5121,"HK1003-Rev.0E-3",TT_FinMile,"55902",-,-,-,100,TK_Complete,19/06/2021,19/06/2021,19/06/2021,19/06/2021,"SI--C--2C55 FF,SI--5552-62 FS,SI--5552-60 FS,SI--C--2-05 FS","SI--C--2C55,SI--5552-62,SI--5552-60,SI--C--2-05","SI--BZK2-81 FS,SI--5552-63# FF","SI--BZK2-81,SI--5552-63#",46,46,46,46,10,10,10,10,18,,"HK1003 -Blackpoint D2 - Rev.0E DD30092021"
1-1671,SI--2222-32,"HEALTH / SAFETY PLAN",5121,"HK1003-Rev.0E-3",TT_Mile,"55902",-,-,-,100,TK_Complete,14/05/2021,14/05/2021,14/05/2021,14/05/2021,"SI-----1-03 SS,SI-----1-05 FS","SI-----1-03,SI-----1-05","SI--LOG4-30 SS,SI--LOG4-20 SS,SI--PEI7-20 SS,SI--PEE7-20 SS,SI--PEM6-20& SS,SI20MB-6-00 SS,SI20MA-6B00 SS,SI20MBR6-15 SS,SI20MA-6-03 SS,SI20MAW6-16 SS,SI20MAV6-15 SS,SI--2227-68 SS,SI--2226-66 SS,SI--5555-15 SS","SI--LOG4-30,SI--LOG4-20,SI--PEI7-20,SI--PEE7-20,SI--PEM6-20&,SI20MB-6-00,SI20MA-6B00,SI20MBR6-15,SI20MA-6-03,SI20MAW6-16,SI20MAV6-15,SI--2227-68,SI--2226-66,SI--5555-15",40,40,40,40,9,9,9,9,12,,"HK1003 -Blackpoint D2 - Rev.0E DD30092021"
1-1672,SI--2222-36,"CLEANING INST. TURBOSET LUBE / LIFTING OIL SYSTEM",5121,"HK1003-Rev.0E-3",TT_Mile,"55902",-,-,-,0,TK_NotStart,31/01/2023,,31/01/2023,,"SI-----1-03 SS","SI-----1-03","SI20MBV8-10 FS,SI20MAV6-55 SS,SI20MAV7-30 FS","SI20MBV8-10,SI20MAV6-55,SI20MAV7-30",130,,130,,30,,30,,89,32,"HK1003 -Blackpoint D2 - Rev.0E DD30092021"
1-1673,SI20BAT7B72,"ELECTRICAL ERECTION SURGE ARRESTORS (BUILT IN GIL)",5121,"HK1003-Rev.0E-3",TT_Task,"55902",-,-,-,0,TK_NotStart,14/11/2022,,20/11/2022,,"SI20BAT7-15 FS,SI20ACA7-70 FF","SI20BAT7-15,SI20ACA7-70","SI20BAT8-10 FS,SI20BZK7D11# FF,SI20BZK7D11# SS","SI20BAT8-10,SI20BZK7D11#,SI20BZK7D11#",119,,120,,27,,28,,85,696,"HK1003 -Blackpoint D2 - Rev.0E DD30092021"
1-1674,SI20LAB6H15,"ERECTION, NDT, PT PIPES / VALVES 20LAB",5121,"HK1003-Rev.0E-3",TT_Task,"55902",-,-,-,0,TK_NotStart,04/08/2022,,16/11/2022,,"SI20LAC6B40 FS,SI---1P6A05 FS,SI20HA-6-40 FS,SI20LAC6M16 FS","SI20LAC6B40,SI---1P6A05,SI20HA-6-40,SI20LAC6M16","SI20LCA8M10 FS,SI20LD8B110 FS,SI--LAB6H15# SS,SI20LAB6H45 FS,SI20LAB7H15 FS,SI20LAC8B10 FS,SI--LAB6H15# FF,SI20HA-6-56 FS,SI20HA-6-20 FS,SI20LAC8B25 FS,SI20-6-16# FF,SI20-6-16# SS","SI20LCA8M10,SI20LD8B110,SI--LAB6H15#,SI20LAB6H45,SI20LAB7H15,SI20LAC8B10,SI--LAB6H15#,SI20HA-6-56,SI20HA-6-20,SI20LAC8B25,SI20-6-16#,SI20-6-16#",104,,119,,24,,27,,76,688,"HK1003 -Blackpoint D2 - Rev.0E DD30092021"
1-1675,SI20PAB5-110,"READY FOR COMPLETION OF BACKFILLING PIPING SYSTEM (OUTSIDE) PAB UMC - URD",5121,"HK1003-Rev.0E-3",TT_Mile,"55902",-,-,-,0,TK_NotStart,28/11/2021,,28/11/2021,,"SI20PAB5-100 FS,SI20PAB5-90 FS","SI20PAB5-100,SI20PAB5-90","SI20PAB5-105 FS","SI20PAB5-105",69,,69,,16,,16,,40,920,"HK1003 -Blackpoint D2 - Rev.0E DD30092021"
1-1676,SI20LAC6B15,"ERECTION FEEDWATER PUMP & MOTOR SKID 20LAC",5121,"HK1003-Rev.0E-3",TT_Task,"55902",-,-,-,0,TK_NotStart,23/06/2022,,17/08/2022,,"SI20HA-6D17 FF,SI20LAC4B40 FS,SI20LAC6M15 FS,SI20ULA5-45 FS,SI20LAC2B05 FS","SI20HA-6D17,SI20LAC4B40,SI20LAC6M15,SI20ULA5-45,SI20LAC2B05","SI20LAC6B16 FS,SI20LAC6B40 SS,SI20LAC7B15 FS,SI20LAC8B25 FS,SI20LAC8B10 FS","SI20LAC6B16,SI20LAC6B40,SI20LAC7B15,SI20LAC8B25,SI20LAC8B10",98,,106,,23,,24,,70,240,"HK1003 -Blackpoint D2 - Rev.0E DD30092021"
1-1677,SI20EK-6-15,"ERECTION GAS FINAL FILTER/ PREHEATER 20EKG",5121,"HK1003-Rev.0E-3",TT_Task,"55902",-,-,-,0,TK_NotStart,01/01/2023,,11/02/2023,,"SI--EK-2-05 FS,SI20UEN5-45 FS,SI20EK-4-40 FS,SI20EK-6-41 FS,SI20UEN3-14 FF,SI20UEN3-13 FS","SI--EK-2-05,SI20UEN5-45,SI20EK-4-40,SI20EK-6-41,SI20UEN3-14,SI20UEN3-13","SI20EK-8H13 FS,SI20UEN5D15 FS,SI20BZK7F25 FF,SI20EK-6-40 SS,SI20EK-7-25 FF,SI20EK-8H14 FS,SI20SGY7A24 FS,SI20EKG6I15 SS,SI-P222-154 SS,SI20UHA6-15 FF","SI20EK-8H13,SI20UEN5D15,SI20BZK7F25,SI20EK-6-40,SI20EK-7-25,SI20EK-8H14,SI20SGY7A24,SI20EKG6I15,SI-P222-154,SI20UHA6-15",126,,132,,29,,30,,88,16,"HK1003 -Blackpoint D2 - Rev.0E DD30092021"
1-1678,SI20MAV6H15,"ERECTION, NDT PIPES / VALVES MAV",5121,"HK1003-Rev.0E-3",TT_Task,"55902",-,-,-,0,TK_NotStart,02/10/2022,,03/12/2022,,"SI20MAV6-40 FS,SI20UMC6M40 FF,SI20MA-6B40 FS,SI20MA-6-65 FS,SI---1P6A05 FS","SI20MAV6-40,SI20UMC6M40,SI20MA-6B40,SI20MA-6-65,SI---1P6A05","SI20MA-8-10 FS,SI20MAV7H15 FS,SI20MAV6-70 FS,SI20MAV8-10 FS,SI20-6-16# FF,SI20-6-16# SS,SI20MA-8B25 FS,SI20MAV6H16 FS","SI20MA-8-10,SI20MAV7H15,SI20MAV6-70,SI20MAV8-10,SI20-6-16#,SI20-6-16#,SI20MA-8B25,SI20MAV6H16",113,,122,,26,,28,,82,56,"HK1003 -Blackpoint D2 - Rev.0E DD30092021"
1-1679,SI20GHC6H15,"ERECTION, NDT, PT / VALVES / PT DEMIN WATER 20GHC",5121,"HK1003-Rev.0E-3",TT_Task,"55902",-,-,-,0,TK_NotStart,06/10/2022,,07/12/2022,,"SI20GHC7H17 FF,SI20GHC6H17 FS,SI---1P6A05 FS","SI20GHC7H17,SI20GHC6H17,SI---1P6A05","SI20GHC8H25 FS,SI20GHC7H15 FF,SI20-6-16# FF,SI20-6-16# SS","SI20GHC8H25,SI20GHC7H15,SI20-6-16#,SI20-6-16#",113,,122,,26,,28,,82,1072,"HK1003 -Blackpoint D2 - Rev.0E DD30092021"
1-1680,SI20CHA8-11,"(TOP-20CHA) GENERATOR PROTECTION CHA",5121,"HK1003-Rev.0E-3",TT_FinMile,"55902",-,-,-,0,TK_NotStart,13/03/2023,,13/03/2023,,"SI20UBA7-104 FS,SI20CHA8-10 FS,SI20UBA7-17 FS","SI20UBA7-104,SI20CHA8-10,SI20UBA7-17","SI20M--9-70 FS,SI20MB-9-15 FS,SI20MKA9-35 FS,SI20CH-8-25 FS,SI20CHA8-25 FS","SI20M--9-70,SI20MB-9-15,SI20MKA9-35,SI20CH-8-25,SI20CHA8-25",136,,136,,31,,31,,92,16,"HK1003 -Blackpoint D2 - Rev.0E DD30092021"
1-1681,SI20C--7B17,"INSTALLATION OF I&C EQUIPMENT & ET200 FOR LATS ST20",5121,"HK1003-Rev.0E-3",TT_Task,"55902",-,-,-,0,TK_NotStart,12/10/2022,,15/11/2022,,"SI--CP-4-26 FS,SI20UMC5C55 FS,SI--CP-4-25 FS,SI20BZP7-110 FS,SI20MAD7-15 SS","SI--CP-4-26,SI20UMC5C55,SI--CP-4-25,SI20BZP7-110,SI20MAD7-15","SI20BZK7-28 FS","SI20BZK7-28",114,,119,,26,,27,,83,304,"HK1003 -Blackpoint D2 - Rev.0E DD30092021"
1-1682,SI20BBT7-15,"PLACEMENT AUX. TRANSFORMER 20BBT",5121,"HK1003-Rev.0E-3",TT_Task,"55902",-,-,-,0,TK_NotStart,20/08/2022,,24/08/2022,,"SI20BBT4-25 FS,SI20BBT4-40 FS,SI20BAT4-10 FS","SI20BBT4-25,SI20BBT4-40,SI20BAT4-10","SI20BBT7-16 FS","SI20BBT7-16",107,,107,,24,,25,,78,584,"HK1003 -Blackpoint D2 - Rev.0E DD30092021"
1-1683,SI20SMM6-05,"PRE-ERECTION CRANE 20SMM01/02 FOR 20UMC / PREPARATION FOR LIFTING",5121,"HK1003-Rev.0E-3",TT_Task,"55902",-,-,-,0,TK_NotStart,28/03/2022,,04/04/2022,,"SI20SMM2-83 FS,SI20SMM4-40 FS,SI20UMC5B49 FF","SI20SMM2-83,SI20SMM4-40,SI20UMC5B49","SI20SMM6-15 FS,SI-P222-160 FS","SI20SMM6-15,SI-P222-160",86,,87,,20,,20,,54,96,"HK1003 -Blackpoint D2 - Rev.0E DD30092021"
1-1684,SI20SMM6-15,"ERECTION / ACCEPTANCE TEST CRANE 20SMM01/02 FOR 20UMC",5121,"HK1003-Rev.0E-3",TT_Task,"55902",-,-,-,0,TK_NotStart,04/04/2022,,24/04/2022,,"SI20SMM6-05 FS,SI20UMC5E70 FS","SI20SMM6-05,SI20UMC5E70","SI20SMM6-70 FS,SI20BZL7F15 FS,SI-P222-82 FS,SI20UMY6M75 FS,SI20UMC5-05# FF","SI20SMM6-70,SI20BZL7F15,SI-P222-82,SI20UMY6M75,SI20UMC5-05#",87,,90,,20,,21,,55,96,"HK1003 -Blackpoint D2 - Rev.0E DD30092021"
1-1685,SI20LDK6A15,"ERECTION, NDT, PT PIPES / VALVES 20LDK",5121,"HK1003-Rev.0E-3",TT_Task,"55902",-,-,-,0,TK_NotStart,05/08/2022,,28/12/2022,,"SI20LDK6B40 FS,SI20LDK6B16 SS,SI20MAG6-65 FS,SI---1P6A05 FS","SI20LDK6B40,SI20LDK6B16,SI20MAG6-65,SI---1P6A05","SI20LCA8M10 SS,SI20LAC8B10 SS,SI20LD8B110 SS,SI20LDK7H16 FS,SI20LD8B110 FS,SI20LDK6A16 FS","SI20LCA8M10,SI20LAC8B10,SI20LD8B110,SI20LDK7H16,SI20LD8B110,SI20LDK6A16",104,,125,,24,,29,,76,296,"HK1003 -Blackpoint D2 - Rev.0E DD30092021"
1-1686,SI20MAV8-10,"(TOP-20MAV) ST LUBE AND LIFTING OIL SYSTEM",5121,"HK1003-Rev.0E-3",TT_FinMile,"55902",-,-,-,0,TK_NotStart,10/04/2023,,10/04/2023,,"SI20MA-6D70 FS,SI20MAA6A15 FS,SI20MA-6D45 FS,SI20MAV6-55 FS,SI20BZK7-28 FS,SI20MAV7H15 FS,SI20MAV6H15 FS,SI20BZK7C33 FS,SI20MAD8-26& FS","SI20MA-6D70,SI20MAA6A15,SI20MA-6D45,SI20MAV6-55,SI20BZK7-28,SI20MAV7H15,SI20MAV6H15,SI20BZK7C33,SI20MAD8-26&","SI20MA-8-10 FS,SI20MAV8-25 FS","SI20MA-8-10,SI20MAV8-25",140,,140,,32,,32,,94,32,"HK1003 -Blackpoint D2 - Rev.0E DD30092021"
1-1687,SI20QU-8-10,"(TOP-20QU) SAMPLING SYSTEM",5121,"HK1003-Rev.0E-3",TT_FinMile,"55902",-,-,-,0,TK_NotStart,13/05/2023,,13/05/2023,,"SI20QU-7-15 FS,SI20QU-6H15 FS,SI20QU-7H15 FS,SI20SGY7A26 FS","SI20QU-7-15,SI20QU-6H15,SI20QU-7H15,SI20SGY7A26","SI20QC-8-25 FS","SI20QC-8-25",145,,145,,33,,33,,97,64,"HK1003 -Blackpoint D2 - Rev.0E DD30092021"
1-1688,SI20MB-6-00&,"START PREPARATION FOUNDATION, ERECTION GT20",5121,"HK1003-Rev.0E-3",TT_Mile,"55902",-,-,-,0,TK_NotStart,16/07/2022,,16/07/2022,,"SI-----1-05 FS","SI-----1-05","SI20MB-6-00 SS","SI20MB-6-00",102,,102,,23,,23,,73,184,"HK1003 -Blackpoint D2 - Rev.0E DD30092021"
1-1689,SI--UBA2K60,"(DF) INPUT FOR MS3 ELECTRICAL MODULES UBA (all)",5121,"HK1003-Rev.0E-3",TT_FinMile,"55902",-,-,-,100,TK_Complete,23/06/2021,23/06/2021,23/06/2021,23/06/2021,"SI-----1-01 SS,SI--UBA2G85 FS","SI-----1-01,SI--UBA2G85","SI20UBA2C31 FS,SI20UBA2G60 SS,SI20UBA2-5 FS,SI--UBA2E60 FS,SI--UBA2F60 SS,SI20UBA2C-5 FS,SI20UBA2G61 FS,SI20UBA2G62 FS","SI20UBA2C31,SI20UBA2G60,SI20UBA2-5,SI--UBA2E60,SI--UBA2F60,SI20UBA2C-5,SI20UBA2G61,SI20UBA2G62",46,46,46,46,10,10,10,10,18,,"HK1003 -Blackpoint D2 - Rev.0E DD30092021"
1-1690,SI--EK-2-86,"CONTRACT INTO FORCE FUEL GAS RECEIVING AND MIXING SYSTEM EK",5121,"HK1003-Rev.0E-3",TT_Mile,"55902",-,-,-,100,TK_Complete,28/06/2021,28/06/2021,28/06/2021,28/06/2021,"SI--EK-2-81 FS","SI--EK-2-81","SI20EK-3-27 FS,SI--EK-2-67 SS,SI20EK-3-82 FS,SI--EK-2-90 FS,SI--EK-2-89 FS","SI20EK-3-27,SI--EK-2-67,SI20EK-3-82,SI--EK-2-90,SI--EK-2-89",47,47,47,47,11,11,11,11,19,,"HK1003 -Blackpoint D2 - Rev.0E DD30092021"
1-1691,SI20HA-6-70,"HRSG20 READY FOR CHEMICAL CLEANING",5121,"HK1003-Rev.0E-3",TT_FinMile,"55902",-,-,-,0,TK_NotStart,12/05/2023,,12/05/2023,,"SI20--P6-73 FF,SI20HA-6A45 FS","SI20--P6-73,SI20HA-6A45","SI20--P6-75 FS,SI20--P6-76 FF","SI20--P6-75,SI20--P6-76",144,,144,,33,,33,,97,0,"HK1003 -Blackpoint D2 - Rev.0E DD30092021"
1-1692,SI20LAC8B26,"FIRST FEEDWATER SYSTEM MINIMUM FLOW OPERATION LAB/C",5121,"HK1003-Rev.0E-3",TT_Task,"55902",-,-,-,0,TK_NotStart,11/06/2023,,17/06/2023,,"SI20L--8-35 FS,SI20LAC8B25 FS","SI20L--8-35,SI20LAC8B25","SI--C--8-58 FS","SI--C--8-58",149,,150,,34,,35,,98,8,"HK1003 -Blackpoint D2 - Rev.0E DD30092021"
1-1693,SI20EK-8-46,"FORWARDING NATURAL GAS TO GT20",5121,"HK1003-Rev.0E-3",TT_Task,"55902",-,-,-,0,TK_NotStart,21/06/2023,,25/06/2023,,"SI20EK-8-25 FS,SI20EK-8-99 FS,SI20EKT6I15 FS","SI20EK-8-25,SI20EK-8-99,SI20EKT6I15","SI20MKA9-41 FS,SI20MB-9-15 FS,SI20MKA9-10 FS","SI20MKA9-41,SI20MB-9-15,SI20MKA9-10",150,,151,,35,,35,,98,8,"HK1003 -Blackpoint D2 - Rev.0E DD30092021"
1-1694,SI--B--2A55,"(ELV3) FINAL EL.LOAD DATA FOR LV",5121,"HK1003-Rev.0E-3",TT_Mile,"55902",-,-,-,100,TK_Complete,30/07/2021,30/07/2021,30/07/2021,30/07/2021,"SP--MB-2A55 FS,SI--BAW2-04 FS,SI--BZK2-19 FS,SI--SMM2-87 FS,SI--BAW2-86 SS,SI20BFA2-25 SS,SI--SMM2-92 FS,SP--B--2-52 FS,SI20PAS2A92 FS,SI20PCC2A96 FS","SP--MB-2A55,SI--BAW2-04,SI--BZK2-19,SI--SMM2-87,SI--BAW2-86,SI20BFA2-25,SI--SMM2-92,SP--B--2-52,SI20PAS2A92,SI20PCC2A96","SI--PM-2-60 FS,SI20CJ-2-50 FS,SI--B--2-30 FS,SI--BAW2-06 SS,SI--C--2C55 FS,SI20BFF3-25 FS,SI20BFC3-25 FS,SI20BFA3-25 FS,SI20BTA3A25 FS,SI20BTL3-25 FS,SI20BTA3-25 FS,SI20BRU3-25 FS,SI20UBY2-5 FS,SI20UBY2-41 FS,SI20UBY2-49 FS,SI20BUK2-85 FS,SI20BUK2-15 FS,SI20XKA2-15 FS,SI--C--2C50 FS","SI--PM-2-60,SI20CJ-2-50,SI--B--2-30,SI--BAW2-06,SI--C--2C55,SI20BFF3-25,SI20BFC3-25,SI20BFA3-25,SI20BTA3A25,SI20BTL3-25,SI20BTA3-25,SI20BRU3-25,SI20UBY2-5,SI20UBY2-41,SI20UBY2-49,SI20BUK2-85,SI20BUK2-15,SI20XKA2-15,SI--C--2C50",51,51,51,51,12,12,12,12,23,,"HK1003 -Blackpoint D2 - Rev.0E DD30092021"
1-1695,SI--B--2-55,"(EMV3) FINAL EL. LOAD DATA FOR MV",5121,"HK1003-Rev.0E-3",TT_Mile,"55902",-,-,-,100,TK_Complete,29/05/2021,29/05/2021,29/05/2021,29/05/2021,"SI-----1-03 SS,SI-----1-05 FS,SI--LCB2B86 FS,SI--PCB2B86 FS","SI-----1-03,SI-----1-05,SI--LCB2B86,SI--PCB2B86","SI--PM-2-60 FS,SI--BBA2-85 FS","SI--PM-2-60,SI--BBA2-85",43,43,43,43,10,10,10,10,14,,"HK1003 -Blackpoint D2 - Rev.0E DD30092021"
1-1696,SI--B--2-50,"(EMV2) PREL. EL. LOAD DATA FOR MV",5121,"HK1003-Rev.0E-3",TT_Mile,"55902",-,-,-,100,TK_Complete,15/01/2021,15/01/2021,15/01/2021,15/01/2021,"SI-----1-03 SS","SI-----1-03","SI--PM-2-30 FS,SI20BAT2-15 FS,SI--3332-27 FS,SI--BBA2-15 FS","SI--PM-2-30,SI20BAT2-15,SI--3332-27,SI--BBA2-15",23,23,23,23,5,5,5,5,2,,"HK1003 -Blackpoint D2 - Rev.0E DD30092021"
1-1697,SI20BAC4-40,"(OTD-OS) ON SITE (ET9) GEN. CIRCUIT BREAKER 20BAC",5121,"HK1003-Rev.0E-3",TT_FinMile,"55902",-,-,-,0,TK_NotStart,14/08/2022,,14/08/2022,,"SI20BAC4-25 FS","SI20BAC4-25","SI20BAC7-15 FS","SI20BAC7-15",106,,106,,24,,24,,77,352,"HK1003 -Blackpoint D2 - Rev.0E DD30092021"
1-1698,SI20BBT4-40,"(OTD-OS) ON SITE (ET6) AUX. TRANSFORMER 20BBT",5121,"HK1003-Rev.0E-3",TT_FinMile,"55902",-,-,-,0,TK_NotStart,19/08/2022,,19/08/2022,,"SI20BBT4-25 FS,SI20BBT2-46 FS","SI20BBT4-25,SI20BBT2-46","SI20BBT7-15 FS","SI20BBT7-15",106,,106,,24,,24,,78,584,"HK1003 -Blackpoint D2 - Rev.0E DD30092021"
1-1699,SI--2222-10,"ORDER PLACED OPERATING MANUAL (BHB)",5121,"HK1003-Rev.0E-3",TT_Mile,"55902",-,-,-,0,TK_NotStart,31/12/2022,,31/12/2022,,"SI-----1-03 SS,SI-----1-05 FS","SI-----1-03,SI-----1-05","SI--2222-21 SS,SI--2222-22 SS","SI--2222-21,SI--2222-22",126,,126,,29,,29,,88,104,"HK1003 -Blackpoint D2 - Rev.0E DD30092021"
1-1700,SI--ZTA2A80,"QUOTATION STAGE CHEMICAL CLEANING SYSTEM ZTA",5121,"HK1003-Rev.0E-3",TT_Task,"55902",-,-,-,0,TK_NotStart,18/06/2022,,12/08/2022,,"SI--ZTA2A75 FS,SI--3332-76 FS","SI--ZTA2A75,SI--3332-76","SI--ZTA2A85 FS","SI--ZTA2A85",98,,105,,22,,24,,70,88,"HK1003 -Blackpoint D2 - Rev.0E DD30092021"
1-1701,SI--BAC2-85,"CONTRACT INTO FORCE GEN. CIRCUIT BREAKER BAC",5121,"HK1003-Rev.0E-3",TT_Mile,"55902",-,-,-,100,TK_Complete,16/07/2021,16/07/2021,16/07/2021,16/07/2021,"SI--BAC2-80 FS","SI--BAC2-80","SI--BAC2-60 FS,SI20BAC3-25 FS","SI--BAC2-60,SI20BAC3-25",49,49,49,49,11,11,11,11,22,,"HK1003 -Blackpoint D2 - Rev.0E DD30092021"
1-1702,SI20QC-3-26,"MANUFACTURING DOSING CONTAINER 20QC",5121,"HK1003-Rev.0E-3",TT_Task,"55902",-,-,-,0,TK_NotStart,27/10/2021,,10/05/2022,,"SI20QC-2-85 FS,SI20QC-3-25 FS,SI--2222-30 FS","SI20QC-2-85,SI20QC-3-25,SI--2222-30","SI20QC-3B70 FS","SI20QC-3B70",64,,92,,15,,21,,36,1632,"HK1003 -Blackpoint D2 - Rev.0E DD30092021"
1-1703,SI20QC-3-80,"(RFS) READY FOR SHIPMENT DOSING CONTAINER 20QC",5121,"HK1003-Rev.0E-3",TT_FinMile,"55902",-,-,-,0,TK_NotStart,07/06/2022,,07/06/2022,,"SI20QC-4B10 FS","SI20QC-4B10","SI20QC-2-06 FS,SI20QC-4-25 FS","SI20QC-2-06,SI20QC-4-25",96,,96,,22,,22,,68,1632,"HK1003 -Blackpoint D2 - Rev.0E DD30092021"
1-1704,SI20MKA8-25,"COLD COMMISSIONING GENERATOR INCL. BEARING SYSTEM 20MKA/MKD",5121,"HK1003-Rev.0E-3",TT_Task,"55902",-,-,-,0,TK_NotStart,03/05/2023,,06/06/2023,,"SI20MKA8-10 FS,SI20CPB8-25 FS,SI20PGB8B25 SS,SI20MKQ8-25 FS,SI20MKG8-26 FS,SI20MKF8-11 FS,SI20CPA8-25 FS,SI20MKA6-12 FS,SI-PM-40 FS,SI20TPM7A8-30 FF,SI20TPM7B8-30 FF,SI20TPM8A8-30 FF,SI20MKC8-77 FS,SI20MBA8-25 SS","SI20MKA8-10,SI20CPB8-25,SI20PGB8B25,SI20MKQ8-25,SI20MKG8-26,SI20MKF8-11,SI20CPA8-25,SI20MKA6-12,SI-PM-40,SI20TPM7A8-30,SI20TPM7B8-30,SI20TPM8A8-30,SI20MKC8-77,SI20MBA8-25","SI20MA-9-05 FS,SI20MB-9-05 FS,SI20MKA8-70 FS","SI20MA-9-05,SI20MB-9-05,SI20MKA8-70",143,,148,,33,,34,,96,136,"HK1003 -Blackpoint D2 - Rev.0E DD30092021"
1-1705,SI--BFT8-10,"(TOP-20BFT03) TRANSFORMER 20BFT03",5121,"HK1003-Rev.0E-3",TT_FinMile,"55902",-,-,-,0,TK_NotStart,17/05/2023,,17/05/2023,,"SI20PAD7-33 FS,SI20BZP7-95 FS,SI--BHT7-20 FS,SI20SGY7-19 FS,SI20SGY7-18 FS,SI20BZK7B46 FS","SI20PAD7-33,SI20BZP7-95,SI--BHT7-20,SI20SGY7-19,SI20SGY7-18,SI20BZK7B46","SI--BFT8-25 FS","SI--BFT8-25",145,,145,,33,,33,,97,72,"HK1003 -Blackpoint D2 - Rev.0E DD30092021"
1-1706,SI--BHT4-40,"(OTD-OS) ON SITE LV TRANSFORMER 20BFT03/04",5121,"HK1003-Rev.0E-3",TT_FinMile,"55902",-,-,-,0,TK_NotStart,06/11/2022,,06/11/2022,,"SI--BHT4-25 FS","SI--BHT4-25","SI--BHT7-20 FS,SI--BHT7-15 FS","SI--BHT7-20,SI--BHT7-15",118,,118,,27,,27,,85,200,"HK1003 -Blackpoint D2 - Rev.0E DD30092021"
1-1707,SI--BFT8-25,"COMMISSIONING LV TRANSFORMER 20BFT03",5121,"HK1003-Rev.0E-3",TT_Task,"55902",-,-,-,0,TK_NotStart,18/05/2023,,24/05/2023,,"SI--BFT8-10 FS,SI20BBA8-25 FS,SI-PM-40 FS,SI20BBA8-37 SS,SI20SGC8-31 FS","SI--BFT8-10,SI20BBA8-25,SI-PM-40,SI20BBA8-37,SI20SGC8-31","SI20PAD8-55 SS,SI--BFT8-27 SS","SI20PAD8-55,SI--BFT8-27",145,,146,,34,,34,,97,72,"HK1003 -Blackpoint D2 - Rev.0E DD30092021"
1-1708,SP20CJP3A11,"DELIVERY GT I&C CABINETS CJ- / CPA TO ELECTRICAL MODULES MANUFACTURER",5121,"HK1003-Rev.0E-3",TT_Mile,"55902",-,-,-,0,TK_NotStart,17/12/2021,,17/12/2021,,"SP20CJP3A10 FS","SP20CJP3A10","SI20UBA4B40 SS,SI20UBA4G62 FS,SI20UBA4G63 FS","SI20UBA4B40,SI20UBA4G62,SI20UBA4G63",71,,71,,16,,16,,42,1320,"HK1003 -Blackpoint D2 - Rev.0E DD30092021"
1-1709,SI20MAG6-02,"PLACING AND ALIGNMENT OF SUPPORT PLATES AND SLIDING SUPPORTS MAG20",5121,"HK1003-Rev.0E-3",TT_Task,"55902",-,-,-,0,TK_NotStart,21/05/2022,,23/05/2022,,"SI20MAG6-00 FS","SI20MAG6-00","SI20MAG6-04 SS","SI20MAG6-04",94,,94,,21,,22,,66,144,"HK1003 -Blackpoint D2 - Rev.0E DD30092021"
1-1710,SI20MAG6-00,"SETTING UP OF ASSEMBLY AND CHECK FOUNDATION CONDENSER MAG20",5121,"HK1003-Rev.0E-3",TT_Task,"55902",-,-,-,0,TK_NotStart,18/05/2022,,20/05/2022,,"SI20M--6-04 FS,SI20MAG4-25 FS,SI20UMC5B15 FS,SI20MAG6-61 FS","SI20M--6-04,SI20MAG4-25,SI20UMC5B15,SI20MAG6-61","SI20MAG6-20# SS,SI20MAG6-02 FS","SI20MAG6-20#,SI20MAG6-02",93,,93,,21,,21,,65,144,"HK1003 -Blackpoint D2 - Rev.0E DD30092021"
1-1711,SI20HB-3B80,"(RFS) READY FOR SHIPMENT SECONDARY STEEL STRUCTURE HRSG20_1st Part incl. Drum Supports",5121,"HK1003-Rev.0E-3",TT_FinMile,"55902",-,-,-,0,TK_NotStart,28/12/2021,,28/12/2021,,"SI20HB-4B11 FS","SI20HB-4B11","SI20HB-4B25 FS","SI20HB-4B25",73,,73,,17,,17,,43,640,"HK1003 -Blackpoint D2 - Rev.0E DD30092021"
1-1712,SI20QFB8-10,"(TOP-20QFB) ST CONTROL AIR SYSTEM",5121,"HK1003-Rev.0E-3",TT_FinMile,"55902",-,-,-,0,TK_NotStart,12/06/2023,,12/06/2023,,"SI20QFB7H15 FS,SI20QFB6H15 FS,SI20MAD8-26& FS","SI20QFB7H15,SI20QFB6H15,SI20MAD8-26&","SI20QFB8-25 FS,SI20TPM9A8-30 FS","SI20QFB8-25,SI20TPM9A8-30",149,,149,,34,,34,,98,32,"HK1003 -Blackpoint D2 - Rev.0E DD30092021"
1-1713,SI20MAL8-10,"(TOP-20MAL) ST VACUUM DRAIN SYSTEM",5121,"HK1003-Rev.0E-3",TT_FinMile,"55902",-,-,-,0,TK_NotStart,17/04/2023,,17/04/2023,,"SI20MA-6D70 FS,SI20MAA6A15 FS,SI20MA-6D45 FS,SI20MAL6A15 FS,SI20MAL7A15 FS,SI20MAL6A45 FS,SI20BZK7C33 FS,SI20BZK7-28 FS,SI20MAD8-26& FS,SI20BZK7C34 FS,SI20MAL7A15 FF","SI20MA-6D70,SI20MAA6A15,SI20MA-6D45,SI20MAL6A15,SI20MAL7A15,SI20MAL6A45,SI20BZK7C33,SI20BZK7-28,SI20MAD8-26&,SI20BZK7C34,SI20MAL7A15","SI20MAL8-25 FS,SI20MA-8-25 FS","SI20MAL8-25,SI20MA-8-25",141,,141,,32,,32,,95,32,"HK1003 -Blackpoint D2 - Rev.0E DD30092021"
1-1714,SI20MAX6-15,"ERECTION HYDRAULIC SYSTEM MAX",5121,"HK1003-Rev.0E-3",TT_Task,"55902",-,-,-,0,TK_NotStart,10/09/2022,,23/09/2022,,"SI20UMC5C45 FS,SI20MAX4-40 FS,SI20UMC5C55 FS,SI20MBA6-35 FS","SI20UMC5C45,SI20MAX4-40,SI20UMC5C55,SI20MBA6-35","SI20MAX6-75 FS,SI20MAX6-40 SS,SI20MAX7-15 FF","SI20MAX6-75,SI20MAX6-40,SI20MAX7-15",110,,111,,25,,26,,80,1144,"HK1003 -Blackpoint D2 - Rev.0E DD30092021"
1-1715,SI20MAX6-75,"PIPE CLEANING CONTROL OIL SYSTEM MAX",5121,"HK1003-Rev.0E-3",TT_Task,"55902",-,-,-,0,TK_NotStart,25/02/2023,,03/03/2023,,"SI20MAX6-15 FS,SI20MAX6H15 FS,SI20MA-6E41 FF","SI20MAX6-15,SI20MAX6H15,SI20MA-6E41","SI20MAX8-10 FS,SI20MAX8-70 FS","SI20MAX8-10,SI20MAX8-70",134,,134,,31,,31,,91,136,"HK1003 -Blackpoint D2 - Rev.0E DD30092021"
1-1716,SI--G--2-50,"(DF) MECH. ENGINEERING / PLANT LAYOUT G SYSTEMS",5121,"HK1003-Rev.0E-3",TT_FinMile,"55902",-,-,-,100,TK_Complete,07/09/2021,07/09/2021,07/09/2021,07/09/2021,"SI--G--2-30 FS","SI--G--2-30","SI--CKA2-00 FF,SI20GM-6H15 FS,SI20GM-6H16 FS,SI20GHD6I15 FS,SI20GM-6H19 FS,SI20GHD6H15 FS,SI--2222-50 SS,SI20GM-6H17 FS,SI20GM-6H18 FS","SI--CKA2-00,SI20GM-6H15,SI20GM-6H16,SI20GHD6I15,SI20GM-6H19,SI20GHD6H15,SI--2222-50,SI20GM-6H17,SI20GM-6H18",57,57,57,57,13,13,13,13,28,,"HK1003 -Blackpoint D2 - Rev.0E DD30092021"
1-1717,SI--G--2-65,"(DF) PROCESS FINAL / INPUT FOR M2 G-SYSTEMS",5121,"HK1003-Rev.0E-3",TT_FinMile,"55902",-,-,-,100,TK_Complete,03/07/2021,03/07/2021,03/07/2021,03/07/2021,"SI--G--2-83 FS,SI--G--2-75 FS","SI--G--2-83,SI--G--2-75","SI--C--2C55 FS,SI--G--2-85 FS,SI--G--2-84 FS,SI--G--2-30 FS","SI--C--2C55,SI--G--2-85,SI--G--2-84,SI--G--2-30",48,48,48,48,11,11,11,11,20,,"HK1003 -Blackpoint D2 - Rev.0E DD30092021"
1-1718,SI--C--3E80,"(RFS) READY FOR SHIPMENT BOP I&C FIELD DEVICES",5121,"HK1003-Rev.0E-3",TT_FinMile,"55902",-,-,-,0,TK_NotStart,12/04/2022,,12/04/2022,,"SI--C--4-10 FS","SI--C--4-10","SI--CP-4-26 FS,SI--CP-4-25 FS","SI--CP-4-26,SI--CP-4-25",88,,88,,20,,20,,57,1312,"HK1003 -Blackpoint D2 - Rev.0E DD30092021"
1-1719,SI20MAG6-26,"ASSEMBLING AND WELDING OF CONDENSER NECK WALLS AND NECK BRACING MAG20",5121,"HK1003-Rev.0E-3",TT_Task,"55902",-,-,-,0,TK_NotStart,17/06/2022,,09/07/2022,,"SI20MAG6-22 SS,SI20MAG6-11 FS","SI20MAG6-22,SI20MAG6-11","SI20MAG6-34 FS,SI20MAN6-15 FS,SI20MAN6E40 FS,SI20MAG6-30 FS","SI20MAG6-34,SI20MAN6-15,SI20MAN6E40,SI20MAG6-30",97,,101,,22,,23,,70,184,"HK1003 -Blackpoint D2 - Rev.0E DD30092021"
1-1720,SI--PAD3-80,"(RFS) READY FOR SHIPMENT PARTS EMBEDDED INTO CONCRETE RISERS",5121,"HK1003-Rev.0E-3",TT_FinMile,"55902",-,-,-,100,TK_Complete,09/08/2021,09/08/2021,09/08/2021,09/08/2021,"SI--PAD4B10 FS","SI--PAD4B10","SI--PAD2-05 FS,SI--PAD4-25 FS","SI--PAD2-05,SI--PAD4-25",53,53,53,53,12,12,12,12,25,,"HK1003 -Blackpoint D2 - Rev.0E DD30092021"
1-1721,SI20QCB8-25,"COLD COMMISSIONING DOSING SYSTEMS REQUIRED FOR PGB-OPERATION QCB",5121,"HK1003-Rev.0E-3",TT_Task,"55902",-,-,-,0,TK_NotStart,11/04/2023,,17/04/2023,,"SI20BFG8-50 FS,SI20QCB8-10 FS,SI20CPC8-27 FS,SI-PM-40 FS,SI20B--8-50 FS,SI20TPM10A8-30 FS,SI20TPI15A8-30 FS","SI20BFG8-50,SI20QCB8-10,SI20CPC8-27,SI-PM-40,SI20B--8-50,SI20TPM10A8-30,SI20TPI15A8-30","SI20LCA8M25 FS,SI20PGB8B25 FS","SI20LCA8M25,SI20PGB8B25",140,,141,,32,,32,,94,16,"HK1003 -Blackpoint D2 - Rev.0E DD30092021"
1-1722,SI20UBX3B26,"FABRICATION DESIGN FABRICATION TRANSPORT STEEL STRUCTURE 20UBX/20UBG",5121,"HK1003-Rev.0E-3",TT_Task,"55902",-,-,-,0,TK_NotStart,17/04/2022,,09/07/2022,,"SI20UBX2-75 FS","SI20UBX2-75","SI20UBX5B10 FS","SI20UBX5B10",89,,101,,20,,23,,58,640,"HK1003 -Blackpoint D2 - Rev.0E DD30092021"
1-1723,SI20PAD4-40,"(OTD-OS) ON SITE 20PAD FILL BATCH 1",5121,"HK1003-Rev.0E-3",TT_FinMile,"55902",-,-,-,0,TK_NotStart,11/08/2022,,11/08/2022,,"SI20PAD4-25 FS","SI20PAD4-25","SI20PAD6-30 FS,SI20PAD6-31 FS","SI20PAD6-30,SI20PAD6-31",105,,105,,24,,24,,77,64,"HK1003 -Blackpoint D2 - Rev.0E DD30092021"
1-1724,SI20UMC5B49,"(RFE) STEEL STRUCTURE CRANE WALKWAY & RAILS 20SMM01/02 20UMC",5121,"HK1003-Rev.0E-3",TT_FinMile,"55902",-,-,-,0,TK_NotStart,10/04/2022,,10/04/2022,,"SI20UMC5B15 FS,SI20UMC5B48 FS","SI20UMC5B15,SI20UMC5B48","SI20MAG6-06 FS,SI20UMC6M16 FS,SI20UMC5B35 FS,SI20UMC5B15# FF,SI20UPY6M10 FS,SI20MAG6-14 FS,SI20SMM6-05 FF","SI20MAG6-06,SI20UMC6M16,SI20UMC5B35,SI20UMC5B15#,SI20UPY6M10,SI20MAG6-14,SI20SMM6-05",88,,88,,20,,20,,57,96,"HK1003 -Blackpoint D2 - Rev.0E DD30092021"
1-1725,SP20MKA3-25,"DESIGN / PROCUREMENT / MANUFACTURING GEN. 20MKA",5121,"HK1003-Rev.0E-3",TT_Task,"55902",-,-,-,51,TK_Active,19/03/2021,19/03/2021,01/04/2022,,"SP--MKA2-86 SS","SP--MKA2-86","SP20MKA3-81 FS,SP20MKA3B25 FF,SI20MKA3-85 SS","SP20MKA3-81,SP20MKA3B25,SI20MKA3-85",32,32,86,,7,7,20,,6,376,"HK1003 -Blackpoint D2 - Rev.0E DD30092021"
1-1726,SP20MKA3-81,"DELIVERY ST GEN. 20MKA",5121,"HK1003-Rev.0E-3",TT_Mile,"55902",-,-,-,0,TK_NotStart,02/04/2022,,02/04/2022,,"SP20MKA3-25 FS,SI20MKA3-85 FS,SP--MKA2B41 FS","SP20MKA3-25,SI20MKA3-85,SP--MKA2B41","SI20MA-4-25 FS,SP20MKA3-70 FS","SI20MA-4-25,SP20MKA3-70",87,,87,,20,,20,,55,376,"HK1003 -Blackpoint D2 - Rev.0E DD30092021"
1-1727,SI20HA-6-56,"PRESSURE TEST HRSG20",5121,"HK1003-Rev.0E-3",TT_Task,"55902",-,-,-,0,TK_NotStart,18/03/2023,,14/04/2023,,"SI20HA-6C26 FS,SI20HA-6-55 FF,SI20HB-6-13 FS,SI20HA-6-20 FS,SI20HB-4A41 FS,SI20HA-6-50& SS,SI20HB-6-14 FS,SI20HA-6-26 FS,SI20LBB6J15 FF,SI20LAB6H15 FS,SI20GHC6-90& FS,SI20LBA6J15 FS","SI20HA-6C26,SI20HA-6-55,SI20HB-6-13,SI20HA-6-20,SI20HB-4A41,SI20HA-6-50&,SI20HB-6-14,SI20HA-6-26,SI20LBB6J15,SI20LAB6H15,SI20GHC6-90&,SI20LBA6J15","SI20HAA8E17 FS,SI20HAD8G10 FS,SI20LCL8B10 FS,SI20ZT-6A00 FS,SI20HA-6A45 FS,SI20ZTA6A00 SS,SI20HAD8E10 FS,SI20--P6-75 FS,SI20HAD8F10 FS,SI20--P6-73 FS,SI20ZTB6A00 FF,SI20LBH8D10 FS,SI--2222-34 FS,SI20UMY6M70 SS,SI20HA-6-15# FS","SI20HAA8E17,SI20HAD8G10,SI20LCL8B10,SI20ZT-6A00,SI20HA-6A45,SI20ZTA6A00,SI20HAD8E10,SI20--P6-75,SI20HAD8F10,SI20--P6-73,SI20ZTB6A00,SI20LBH8D10,SI--2222-34,SI20UMY6M70,SI20HA-6-15#",137,,140,,31,,32,,93,0,"HK1003 -Blackpoint D2 - Rev.0E DD30092021"
1-1728,SI20BZK7C33,"CABLING ST/ST AUXILIARIES",5121,"HK1003-Rev.0E-3",TT_Task,"55902",-,-,-,0,TK_NotStart,12/10/2022,,27/12/2022,,"SI20BZK7-25 FS,SI20BZK4-41 FS,SI--B--7-55 FS,SI--B--2-68 SS,SI20BZP7-110 FS,SI20MAD7-15 FF,SI20MAV6-15 FS,SI20BZK7-25 SS,SI--B--2-93 FS","SI20BZK7-25,SI20BZK4-41,SI--B--7-55,SI--B--2-68,SI20BZP7-110,SI20MAD7-15,SI20MAV6-15,SI20BZK7-25,SI--B--2-93","SI20MAX7-15 FF,SI20M--9-60 FS,SI20MAX7H15 FF,SI20MAX8-10 FS,SI20MAW7-15 FF,SI20MAL7A15 FF,SI20MAJ7B15 FF,SI20MAW7H15 FF,SI20MAV7H15 FF,SI20MAJ7A15 FF,SI20MAX7-15 SS,SI20MAA7A15 FF,SI20MAD8-10 FS,SI20MAN8-10 FS,SI20BZK7-28 FF,SI20MAN7H15 FF,SI20MAJ8-10 FS,SI20MAL8-10 FS,SI20MAW7-15 SS,SI20MA-8-10 FS,SI20PGB8-10 FS,SI20MAW8-10 FS,SI20MAJ7B15 SS,SI20MAG6-60 SS,SI20MAG7A15 FF,SI20MAV8-10 FS,SI20MAG8-10 FS,SI20UMC5D50 FS,SI--2226-55 FS,SI--2222-35 FS,SI20MA-8B25 FS,SI20BFA8-10 FS,SI20BZK7D10# FF,SI20BZK7D10# SS","SI20MAX7-15,SI20M--9-60,SI20MAX7H15,SI20MAX8-10,SI20MAW7-15,SI20MAL7A15,SI20MAJ7B15,SI20MAW7H15,SI20MAV7H15,SI20MAJ7A15,SI20MAX7-15,SI20MAA7A15,SI20MAD8-10,SI20MAN8-10,SI20BZK7-28,SI20MAN7H15,SI20MAJ8-10,SI20MAL8-10,SI20MAW7-15,SI20MA-8-10,SI20PGB8-10,SI20MAW8-10,SI20MAJ7B15,SI20MAG6-60,SI20MAG7A15,SI20MAV8-10,SI20MAG8-10,SI20UMC5D50,SI--2226-55,SI--2222-35,SI20MA-8B25,SI20BFA8-10,SI20BZK7D10#,SI20BZK7D10#",114,,125,,26,,29,,83,304,"HK1003 -Blackpoint D2 - Rev.0E DD30092021"
1-1729,SI20BZK7E25,"CABLING 20UMC ST TO LDK",5121,"HK1003-Rev.0E-3",TT_Task,"55902",-,-,-,0,TK_NotStart,16/10/2022,,08/01/2023,,"SI20BZK7-25 FS,SI20BZK4-41 FS,SI--B--7-55 FS,SI20BZP7-110 FS,SI--B--2-68 SS,SI20BZP7-160 FS,SI20UBA4-42 FS,SI20BZK7-25 SS,SI20BZP7-185 FS,SI--B--2-93 FS","SI20BZK7-25,SI20BZK4-41,SI--B--7-55,SI20BZP7-110,SI--B--2-68,SI20BZP7-160,SI20UBA4-42,SI20BZK7-25,SI20BZP7-185,SI--B--2-93","SI20LBA8H10 FS,SI20LBB8J11 FS,SI20LBG8A10 FS,SI20PAH7-25 SS,SI20LBA7J15 FF,SI20SCA7-15 FS,SI20PCB7H15 FF,SI20PGB7H15 FF,SI20LDK7H16 FF,SI20SGC8E10 FS,SI20PCB8M10 FS,SI20PCB7M15 SS,SI20MA-8-10 FS,SI20LCB7B15 SS,SI20GHD7H15 FS,SI20BZK7A27 SS,SI20MKA7-15 SS,SI20LCW7H15 FF,SI20LBG7A17 FF,SI20LBA7H15 FF,SI20LBG7C15 SS,SI20LBA8J10 FS,SI20LCA7A15 FF,SI20PAH8-25 FS,SI20LBG7A15 FF,SI20LBB7J15 FF,SI20PDB7B16 SS,SI20LBB7J17 FF,SI20BZL8-10 FS,SI20SAM8-11 FS,SI20PGB8-10 FS,SI20UMC5D50 FS,SI20LBA7H16 FS,SI--2226-55 SS,SI--2222-35 FS,SI20LCA7A15 FS,SI20MA-8B25 FS,SI20BZK7D10# FF,SI20BZK7D10# SS","SI20LBA8H10,SI20LBB8J11,SI20LBG8A10,SI20PAH7-25,SI20LBA7J15,SI20SCA7-15,SI20PCB7H15,SI20PGB7H15,SI20LDK7H16,SI20SGC8E10,SI20PCB8M10,SI20PCB7M15,SI20MA-8-10,SI20LCB7B15,SI20GHD7H15,SI20BZK7A27,SI20MKA7-15,SI20LCW7H15,SI20LBG7A17,SI20LBA7H15,SI20LBG7C15,SI20LBA8J10,SI20LCA7A15,SI20PAH8-25,SI20LBG7A15,SI20LBB7J15,SI20PDB7B16,SI20LBB7J17,SI20BZL8-10,SI20SAM8-11,SI20PGB8-10,SI20UMC5D50,SI20LBA7H16,SI--2226-55,SI--2222-35,SI20LCA7A15,SI20MA-8B25,SI20BZK7D10#,SI20BZK7D10#",115,,127,,26,,29,,83,296,"HK1003 -Blackpoint D2 - Rev.0E DD30092021"
1-1730,SI20BZP7-80,"ERECTION CABLE TRAYS FOR 20UBA to UBX/UBE/UBF",5121,"HK1003-Rev.0E-3",TT_Task,"55902",-,-,-,0,TK_NotStart,24/07/2022,,20/08/2022,,"SI--PEE7-20 FS,SI--2227-68 FS,SI--BZP2-05 FS,SI--BZP4B40 FS,SI20UBX5B45 FS,SI--BZP2-05 SS,SI20BZP7-26 FS,SI--PEE7-20 SS,SI20BZP7-160 FS","SI--PEE7-20,SI--2227-68,SI--BZP2-05,SI--BZP4B40,SI20UBX5B45,SI--BZP2-05,SI20BZP7-26,SI--PEE7-20,SI20BZP7-160","SI20BZL7A15 SS,SI20BZP7B10# FF,SI20BZP7B10# SS,SI20BZK7A28 FS,SI20BZK7B28 FS,SI20BZK7B33 FS,SI20BZK7-190 FS","SI20BZL7A15,SI20BZP7B10#,SI20BZP7B10#,SI20BZK7A28,SI20BZK7B28,SI20BZK7B33,SI20BZK7-190",103,,107,,24,,24,,75,728,"HK1003 -Blackpoint D2 - Rev.0E DD30092021"
1-1731,SI20BZP7-140,"ERECTION CABLE TRAY FOR LATs GT 20UMC",5121,"HK1003-Rev.0E-3",TT_Task,"55902",-,-,-,0,TK_NotStart,15/10/2022,,28/10/2022,,"SI--PEI7-20 FS,SI--PEE7-20 FS,SI--2227-68 FS,SI--BZP2-05 FS,SI20BZP7-100 FS,SI--BZP4B40 FS,SI20MB-6-22 FS,SI20BZP7-26 FS,SI--PEE7-20 SS,SI20MKA6-18 FS","SI--PEI7-20,SI--PEE7-20,SI--2227-68,SI--BZP2-05,SI20BZP7-100,SI--BZP4B40,SI20MB-6-22,SI20BZP7-26,SI--PEE7-20,SI20MKA6-18","SI20BZK7F26 FS,SI20BZK7L25 FS,SI20BZK7C25 FS,SI20C--7B15 SS,SI20BZK7A26 FF,SI20BZP7B10# FF,SI20BZP7B10# SS,SI20MBR7-15 SS,SI20BZP7-170 FS,SI20BZP7-55 FS,SI20BZP7-85 FS,SI20BZP7-35 FS,SI20BZK7E26 FS","SI20BZK7F26,SI20BZK7L25,SI20BZK7C25,SI20C--7B15,SI20BZK7A26,SI20BZP7B10#,SI20BZP7B10#,SI20MBR7-15,SI20BZP7-170,SI20BZP7-55,SI20BZP7-85,SI20BZP7-35,SI20BZK7E26",115,,116,,26,,27,,83,168,"HK1003 -Blackpoint D2 - Rev.0E DD30092021"
1-1732,SI--UMY2-75,"(F) CONCRETE STRUCTURE DWGS ON SITE RELEASED FOR EXECUTION 20ULY/UMY",5121,"HK1003-Rev.0E-3",TT_FinMile,"55902",-,-,-,0,TK_NotStart,30/11/2021,,30/11/2021,,"SI--UMY2-30 FS,SI20UMY2-60 FS","SI--UMY2-30,SI20UMY2-60","SI20UMY5-05 FS","SI20UMY5-05",69,,69,,16,,16,,40,160,"HK1003 -Blackpoint D2 - Rev.0E DD30092021"
1-1733,SI--UHA2-75,"(F) CONCRETE STRUCTURE DWGS ON SITE RELEASED FOR EXECUTION UHA",5121,"HK1003-Rev.0E-3",TT_FinMile,"55902",-,-,-,100,TK_Complete,03/09/2021,03/09/2021,03/09/2021,03/09/2021,"SI--UHA2-70 FS,SI--UHA2-80 FS,SI--UHA2-81 FS","SI--UHA2-70,SI--UHA2-80,SI--UHA2-81","SI20UHA5-05 FF","SI20UHA5-05",56,56,56,56,13,13,13,13,28,,"HK1003 -Blackpoint D2 - Rev.0E DD30092021"
1-1734,SI20LBF3B25,"DETAIL DESIGN, MANUFACTURING, SHOP TEST BYPASS STATION 20LBF",5121,"HK1003-Rev.0E-3",TT_Task,"55902",-,-,-,55,TK_Active,17/03/2021,17/03/2021,06/03/2022,,"SI--LBF2B85 FS,SI--HA-2-85 FS","SI--LBF2B85,SI--HA-2-85","SI20LBF3B70 FS","SI20LBF3B70",32,32,83,,7,7,19,,6,1736,"HK1003 -Blackpoint D2 - Rev.0E DD30092021"
1-1735,SI20LBF3B80,"(RFS) READY FOR SHIPMENT BYPASS STATION 20LBF",5121,"HK1003-Rev.0E-3",TT_FinMile,"55902",-,-,-,0,TK_NotStart,03/04/2022,,03/04/2022,,"SI20LBF4B10 FS","SI20LBF4B10","SI20LBF4B25 FS","SI20LBF4B25",87,,87,,20,,20,,55,1736,"HK1003 -Blackpoint D2 - Rev.0E DD30092021"
1-1736,SI20LBF4B40,"(OTD-OS) ON SITE BYPASS STATION 20LBF",5121,"HK1003-Rev.0E-3",TT_FinMile,"55902",-,-,-,0,TK_NotStart,20/08/2022,,20/08/2022,,"SI20LBF4B25 FS","SI20LBF4B25","SI20LBF6H47 FS","SI20LBF6H47",107,,107,,24,,24,,78,864,"HK1003 -Blackpoint D2 - Rev.0E DD30092021"
1-1737,SI20LBF4B25,"TRANSPORT BYPASS STATION 20LBF",5121,"HK1003-Rev.0E-3",TT_Task,"55902",-,-,-,0,TK_NotStart,22/07/2022,,20/08/2022,,"SI20LBF3B80 FS","SI20LBF3B80","SI20LBF4B40 FS","SI20LBF4B40",102,,107,,24,,24,,74,864,"HK1003 -Blackpoint D2 - Rev.0E DD30092021"
1-1738,SI--EK-2C60,"(DF) INPUT FOR MS3 GAS FINAL FILTER/ PREHEATER 20EKG",5121,"HK1003-Rev.0E-3",TT_FinMile,"55902",-,-,-,100,TK_Complete,11/07/2021,11/07/2021,11/07/2021,11/07/2021,"SI--EK-2-85 FS","SI--EK-2-85","SI--UEN2-60 FS","SI--UEN2-60",49,49,49,49,11,11,11,11,21,,"HK1003 -Blackpoint D2 - Rev.0E DD30092021"
1-1739,SI20CFE7A25,"CABLING CONTINIOUS EMISSION MONITORING/ STACK HRSG20",5121,"HK1003-Rev.0E-3",TT_Task,"55902",-,-,-,0,TK_NotStart,27/02/2023,,19/03/2023,,"SI20BZK4-42 FS,SI20BZK7-25 FS,SI20BZK4-41 FS,SI--B--7-55 FS,SI--B--2-68 FS,SI20BZK7-130 FS,SI20CFE7-16 FS,SI20BZK7-25 SS,SI--PEE7-20 FS,SI--B--2-93 FS,SI20BZK7-180 FS,SI--BZK4-40 FS","SI20BZK4-42,SI20BZK7-25,SI20BZK4-41,SI--B--7-55,SI--B--2-68,SI20BZK7-130,SI20CFE7-16,SI20BZK7-25,SI--PEE7-20,SI--B--2-93,SI20BZK7-180,SI--BZK4-40","SI20CFE8-13 FS,SI20BZK7D10# FF,SI20BZK7D10# SS","SI20CFE8-13,SI20BZK7D10#,SI20BZK7D10#",134,,137,,31,,32,,92,768,"HK1003 -Blackpoint D2 - Rev.0E DD30092021"
1-1740,SI20HB-6-38,"ERECTION OUTLET DUCT HRSG20",5121,"HK1003-Rev.0E-3",TT_Task,"55902",-,-,-,0,TK_NotStart,21/07/2022,,03/08/2022,,"SI20HB-6-42 FS","SI20HB-6-42","SI20HB-6-40 FS,SI20HB-6-85 FS","SI20HB-6-40,SI20HB-6-85",102,,104,,23,,24,,74,1864,"HK1003 -Blackpoint D2 - Rev.0E DD30092021"
1-1741,SI20HB-6-85,"INSTALLATION COMPENSATORS",5121,"HK1003-Rev.0E-3",TT_Task,"55902",-,-,-,0,TK_NotStart,01/12/2022,,21/12/2022,,"SI20HB-4F40 FS,SI20HB-6-50 FS,SI20HB-6-38 FS","SI20HB-4F40,SI20HB-6-50,SI20HB-6-38","SI20HB-6-40 SS","SI20HB-6-40",121,,124,,28,,29,,86,912,"HK1003 -Blackpoint D2 - Rev.0E DD30092021"
1-1742,SI20HB-6-45,"ERECTION STACK HRSG20_3rd part",5121,"HK1003-Rev.0E-3",TT_Task,"55902",-,-,-,0,TK_NotStart,21/07/2022,,27/07/2022,,"SI20HB-6-44 FS,SI20HB-6-43 FS,SI20HB-4D40 FS,SI20BZP7-195 FS,SI20HB-6-49 FS,SI20HB-6-42 FS","SI20HB-6-44,SI20HB-6-43,SI20HB-4D40,SI20BZP7-195,SI20HB-6-49,SI20HB-6-42","SI20BZK7-130 SS,SI20HB-6-50 FS,SI20HB-6-52 FS","SI20BZK7-130,SI20HB-6-50,SI20HB-6-52",102,,103,,23,,24,,74,1696,"HK1003 -Blackpoint D2 - Rev.0E DD30092021"
1-1743,SI--BZK2-87,"QUOTATION MV/LV CABLES BZK",5121,"HK1003-Rev.0E-3",TT_Task,"55902",-,-,-,52,TK_Active,24/08/2021,24/08/2021,02/11/2021,,"SI--B--2-65 FS,SI--BZK2-86 FS","SI--B--2-65,SI--BZK2-86","SI--BZK2-89 FS,SI--BZK2-85 FS","SI--BZK2-89,SI--BZK2-85",55,55,65,,12,12,15,,27,64,"HK1003 -Blackpoint D2 - Rev.0E DD30092021"
1-1744,SI--BZK2-86,"RFQ MV/LV CABLES BZK",5121,"HK1003-Rev.0E-3",TT_Mile,"55902",-,-,-,100,TK_Complete,24/08/2021,24/08/2021,24/08/2021,24/08/2021,"SI--BZK2-15 FS","SI--BZK2-15","SI--BZK2-87 FS","SI--BZK2-87",55,55,55,55,12,12,12,12,27,,"HK1003 -Blackpoint D2 - Rev.0E DD30092021"
1-1745,SI--BZK2-85,"CONTRACT INTO FORCE MV/LV CABLES BZK (LOT 1)",5121,"HK1003-Rev.0E-3",TT_Mile,"55902",-,-,-,0,TK_NotStart,03/11/2021,,03/11/2021,,"SI--BZK2-87 FS","SI--BZK2-87","SI20BZK3-25 FS,SI--BZK2-89 SS","SI20BZK3-25,SI--BZK2-89",65,,65,,15,,15,,37,64,"HK1003 -Blackpoint D2 - Rev.0E DD30092021"
1-1746,SI--UBA2E60,"(MS3) CONCRETE STRUCTURE FINAL DIMENSIONS, LOADS AVAILABLE UBA7xxx + UBD",5121,"HK1003-Rev.0E-3",TT_FinMile,"55902",-,-,-,100,TK_Complete,23/06/2021,23/06/2021,23/06/2021,23/06/2021,"SI--M--2C20 FS,SI--UBA2K60 FS,SI20UBA2G60 FS,SI20UBA2G61 FS,SI20UBA2G62 FS","SI--M--2C20,SI--UBA2K60,SI20UBA2G60,SI20UBA2G61,SI20UBA2G62","SI--UBA2-65 FF,SI--UBA2-69 FS,SI--UBA2B70 FS,SI--UBA2-69 FF","SI--UBA2-65,SI--UBA2-69,SI--UBA2B70,SI--UBA2-69",46,46,46,46,10,10,10,10,18,,"HK1003 -Blackpoint D2 - Rev.0E DD30092021"
1-1747,SI20PAS3B80,"(RFS) READY FOR SHIPMENT CT MAKE-UP WATER PUMP PAS",5121,"HK1003-Rev.0E-3",TT_FinMile,"55902",-,-,-,0,TK_NotStart,28/12/2021,,28/12/2021,,"SI20PAS4B10 FS","SI20PAS4B10","SI20PAS4B25 FS","SI20PAS4B25",73,,73,,17,,17,,43,2480,"HK1003 -Blackpoint D2 - Rev.0E DD30092021"
1-1748,SI20UEN2B75,"(F) FINISHING WORKS DWGS ON SITE RELEASED FOR EXEC 20UEN",5121,"HK1003-Rev.0E-3",TT_FinMile,"55902",-,-,-,0,TK_NotStart,17/12/2022,,17/12/2022,,"SI20UEN2D70 FS","SI20UEN2D70","SI20UEN3D25 FS","SI20UEN3D25",124,,124,,28,,28,,87,496,"HK1003 -Blackpoint D2 - Rev.0E DD30092021"
1-1749,SI20UEN2D70,"DETAIL DESIGN FENCING, FINISHING WORKS 20UEN",5121,"HK1003-Rev.0E-3",TT_Task,"55902",-,-,-,0,TK_NotStart,23/10/2022,,17/12/2022,,"SI--UEN2-60 FS","SI--UEN2-60","SI20UEN2B75 FS","SI20UEN2B75",116,,124,,27,,28,,84,496,"HK1003 -Blackpoint D2 - Rev.0E DD30092021"
1-1750,SI20C--7L15,"ERECTION I&C-EQUIPMENT 20UMC",5121,"HK1003-Rev.0E-3",TT_Task,"55902",-,-,-,0,TK_NotStart,30/10/2022,,10/12/2022,,"SI20BZP7-110 SS,SI20MAD7-15 SS,SI20UMC5C55 FS,SI20C--7L16 FF","SI20BZP7-110,SI20MAD7-15,SI20UMC5C55,SI20C--7L16","SI20MA-8-10 FS,SI20BZK7-28 SS,SI20MA-8B25 FS","SI20MA-8-10,SI20BZK7-28,SI20MA-8B25",117,,123,,27,,28,,84,440,"HK1003 -Blackpoint D2 - Rev.0E DD30092021"
1-1751,SI20BAW5C16,"ERECTION INDOOR EARTHING 20UMC",5121,"HK1003-Rev.0E-3",TT_Task,"55902",-,-,-,0,TK_NotStart,30/08/2022,,24/10/2022,,"SI--BAW4-40 FS,SI20BZP7-100 FF,SI20BZP7-110 FF","SI--BAW4-40,SI20BZP7-100,SI20BZP7-110","SI20BAW5B15# SS,SI20BAW5B15# FF,SI--BAW8-10 FS,SI--BAW8A10 FS,SI--BAW7-55 FS","SI20BAW5B15#,SI20BAW5B15#,SI--BAW8-10,SI--BAW8A10,SI--BAW7-55",108,,116,,25,,27,,79,1304,"HK1003 -Blackpoint D2 - Rev.0E DD30092021"
1-1752,SI20MAN8-25,"COLD COMMISSIONING ST BYPASS SYSTEM MAN",5121,"HK1003-Rev.0E-3",TT_Task,"55902",-,-,-,0,TK_NotStart,21/06/2023,,30/06/2023,,"SI20MAX8-25 FS,SI20MAN8-10 FS,SI20MA-6-66 FS,SI20SCA8-17 FS,SI-PM-40 FS,SI20TPM9B8-30 SS,SI20PGB8B25 FS,SI20MA-8-25 SS,SI20QFB8-25 SS","SI20MAX8-25,SI20MAN8-10,SI20MA-6-66,SI20SCA8-17,SI-PM-40,SI20TPM9B8-30,SI20PGB8B25,SI20MA-8-25,SI20QFB8-25","SI20MA-8-25# FS,SI20M--9-50 FS","SI20MA-8-25#,SI20M--9-50",150,,151,,35,,35,,99,192,"HK1003 -Blackpoint D2 - Rev.0E DD30092021"
1-1753,SI20PAD8-45,"FILLING OF COOLING WATER BASIN",5121,"HK1003-Rev.0E-3",TT_Task,"55902",-,-,-,0,TK_NotStart,04/06/2023,,10/06/2023,,"SI20UBA8-50 SS,SI20PAD8-10 FS,SI20CPC8-27 FS,SI20PAD8-55 SS,SI20UPY6M11 FS,SI20TPM15A8-30 FS,SI20TPM16A8-30 FS,SI20PAD8-57 FS,SI20PAD8-58 FS,SI20PAD8-59 FS","SI20UBA8-50,SI20PAD8-10,SI20CPC8-27,SI20PAD8-55,SI20UPY6M11,SI20TPM15A8-30,SI20TPM16A8-30,SI20PAD8-57,SI20PAD8-58,SI20PAD8-59","SI20MB-9-15 FS,SI20PAD8-56 SS,SI20MB-9-05 FS","SI20MB-9-15,SI20PAD8-56,SI20MB-9-05",148,,149,,34,,34,,98,104,"HK1003 -Blackpoint D2 - Rev.0E DD30092021"
1-1754,SP--SGJ2-85,"CONTRACT INTO FORCE FIRE FIGHTING / GAS DETECTION SGJ / CYQ / CYE",5121,"HK1003-Rev.0E-3",TT_Mile,"55902",-,-,-,100,TK_Complete,16/08/2021,16/08/2021,16/08/2021,16/08/2021,"SI--3332-76 SS,SP--SGJ2-80 FS","SI--3332-76,SP--SGJ2-80","SP20SGJ3-55 FS,SP--SGJ2-87 SS,SP--SGJ2-55 SS,SP20SGJ3-25 FS,SP--SGJ2-03 FS","SP20SGJ3-55,SP--SGJ2-87,SP--SGJ2-55,SP20SGJ3-25,SP--SGJ2-03",54,54,54,54,12,12,12,12,26,,"HK1003 -Blackpoint D2 - Rev.0E DD30092021"
1-1755,SP--SGJ2-80,"QUOTATION STAGE FIRE FIGHTING / GAS DETECTION SGJ / CYQ / CYE",5121,"HK1003-Rev.0E-3",TT_Task,"55902",-,-,-,100,TK_Complete,16/04/2021,16/04/2021,20/05/2021,20/05/2021,"SP--SGJ2-11 FS","SP--SGJ2-11","SP--SGJ2-85 FS","SP--SGJ2-85",36,36,41,41,8,8,9,9,8,,"HK1003 -Blackpoint D2 - Rev.0E DD30092021"
1-1756,SP--SGJ2-11,"ENGINEERING / PREPARATION RFQ FIRE FIGHTING / GAS DETECTION SGJ / CYQ / CYE",5121,"HK1003-Rev.0E-3",TT_Task,"55902",-,-,-,100,TK_Complete,26/02/2021,26/02/2021,15/04/2021,15/04/2021,"SP--SGJ2-10 FS,SI--3331-35 FS,SP--SG-2-100 FS","SP--SGJ2-10,SI--3331-35,SP--SG-2-100","SP--SGJ2-80 FS","SP--SGJ2-80",29,29,36,36,6,6,8,8,5,,"HK1003 -Blackpoint D2 - Rev.0E DD30092021"
1-1757,SP--SG-2-100,"SUBMISSION OF OVERALL FIRE & EXPLOSION CONCEPT FOR CHECK OF COMPATIBITILITY",5121,"HK1003-Rev.0E-3",TT_Mile,"55902",-,-,-,100,TK_Complete,26/02/2021,26/02/2021,26/02/2021,26/02/2021,"SI-----1-04 SS","SI-----1-04","SP--SGJ2-11 FS","SP--SGJ2-11",29,29,29,29,6,6,6,6,5,,"HK1003 -Blackpoint D2 - Rev.0E DD30092021"
1-1758,SP20MBR2A80,"ENGINEERING / PREPARE TEC RFQ DOC DIFFUSER 20MBR",5121,"HK1003-Rev.0E-3",TT_Task,"55902",-,-,-,100,TK_Complete,15/01/2021,15/01/2021,11/03/2021,11/03/2021,"SI--3331-35 FS,SI-----1-04 SS,SI-----1-05 FS","SI--3331-35,SI-----1-04,SI-----1-05","SP20MBR2-10 FS,SP20MBR2-05 FS,SP20MBR2A81 FS,SI20MBR2B64 FS","SP20MBR2-10,SP20MBR2-05,SP20MBR2A81,SI20MBR2B64",23,23,31,31,5,5,7,7,2,,"HK1003 -Blackpoint D2 - Rev.0E DD30092021"
1-1759,SP20MAX3-80,"(RFS) READY FOR SHIPMENT (NORTH SEA PORT) ST HYDRAULIC SYSTEM 20MAX",5121,"HK1003-Rev.0E-3",TT_FinMile,"55902",-,-,-,0,TK_NotStart,29/04/2022,,29/04/2022,,"SP20MAX4-10 FS","SP20MAX4-10","SI20MAX4-25 FS","SI20MAX4-25",90,,90,,21,,21,,60,1648,"HK1003 -Blackpoint D2 - Rev.0E DD30092021"
1-1760,SP20MAX3-25,"DESIGN / MANUFACTURING ST HYDRAULIC SYSTEM 20MAX",5121,"HK1003-Rev.0E-3",TT_Task,"55902",-,-,-,27,TK_Active,24/07/2021,24/07/2021,01/04/2022,,"SP20MAX2-85 FS,SP20MA-2-81 SS,SI-----1-04 SS,SP20MA-3-25 SS","SP20MAX2-85,SP20MA-2-81,SI-----1-04,SP20MA-3-25","SP20MAX3-70 FS","SP20MAX3-70",51,51,86,,11,11,20,,23,1648,"HK1003 -Blackpoint D2 - Rev.0E DD30092021"
1-1761,SI20SGA4-40,"(OTD-OS) ON SITE FIRE FIGHTING INDOOR HYDRANTS SGA 20UMC",5121,"HK1003-Rev.0E-3",TT_FinMile,"55902",-,-,-,0,TK_NotStart,16/07/2022,,16/07/2022,,"SI20SGA4-25 FS","SI20SGA4-25","SI20SGA6-15 FS","SI20SGA6-15",102,,102,,23,,23,,73,720,"HK1003 -Blackpoint D2 - Rev.0E DD30092021"
1-1762,SI20UBA5B-40,"(HS) START ERECTION STEEL STRUCTURE 20UBA1110/20",5121,"HK1003-Rev.0E-3",TT_Mile,"55902",-,-,-,0,TK_NotStart,28/11/2022,,28/11/2022,,"SI20UBA3B-25 FS,SI20UBA7L15 SS","SI20UBA3B-25,SI20UBA7L15","SI20UBA5B-45 FS","SI20UBA5B-45",121,,121,,28,,28,,86,288,"HK1003 -Blackpoint D2 - Rev.0E DD30092021"
1-1763,SP20MAG3-25,"DESIGN / MANUFACTURING ST CONDENSER 20MAG",5121,"HK1003-Rev.0E-3",TT_Task,"55902",-,-,-,56,TK_Active,26/03/2021,26/03/2021,22/02/2022,,"SP20MA-2-81 SS,SI-----1-04 SS,SP20MA-3-83 FS,SP20MA-2-82 FS","SP20MA-2-81,SI-----1-04,SP20MA-3-83,SP20MA-2-82","SP20MA-3C81 FS,SP20MAG3D70 SS,SP20MAG3-70 FS","SP20MA-3C81,SP20MAG3D70,SP20MAG3-70",33,33,81,,7,7,19,,7,144,"HK1003 -Blackpoint D2 - Rev.0E DD30092021"
1-1764,SI--UMC2A50,"PREPARATION FOUNDATION GROUNDING DWGS TS FOUND. 20UMC",5121,"HK1003-Rev.0E-3",TT_Task,"55902",-,-,-,100,TK_Complete,08/04/2021,08/04/2021,21/04/2021,21/04/2021,"SI--UMC2A70 FF","SI--UMC2A70","SI--UMC2A71 FS","SI--UMC2A71",35,35,37,37,8,8,8,8,7,,"HK1003 -Blackpoint D2 - Rev.0E DD30092021"
1-1765,SI20MA-8-25&,"START COLD COMMISSIONING ST20",5121,"HK1003-Rev.0E-3",TT_Mile,"55902",-,-,-,0,TK_NotStart,11/04/2023,,11/04/2023,,"SI-----1-05 FS","SI-----1-05","SI20MAD8-26& SS","SI20MAD8-26&",140,,140,,32,,32,,94,32,"HK1003 -Blackpoint D2 - Rev.0E DD30092021"
1-1766,SI20MBA9-55,"INSPECTION GT SYSTEMS WITH NOTIFIED BODY",5121,"HK1003-Rev.0E-3",TT_Mile,"55902",-,-,-,0,TK_NotStart,23/06/2023,,23/06/2023,,"SI20MBA8-10 SS,SI20MBA8-25 FS","SI20MBA8-10,SI20MBA8-25","SI20MB-9-15 SS","SI20MB-9-15",150,,150,,35,,35,,99,8,"HK1003 -Blackpoint D2 - Rev.0E DD30092021"
1-1767,SI20SGY3A80,"(RFS) READY FOR SHIPMENT FIRE FIGHTING DETECTION SYSTEM SGY",5121,"HK1003-Rev.0E-3",TT_FinMile,"55902",-,-,-,0,TK_NotStart,31/03/2022,,31/03/2022,,"SI20SGY4A10 FS,SI--SGY2-05 FS","SI20SGY4A10,SI--SGY2-05","SI20SGY4A25 FS","SI20SGY4A25",86,,86,,20,,20,,54,1952,"HK1003 -Blackpoint D2 - Rev.0E DD30092021"
1-1768,SI20BBT3-25,"DETAIL DESIGN / MANUFACTURING / SHOP TEST AUX. TRANSFORMER 20BBT",5121,"HK1003-Rev.0E-3",TT_Task,"55902",-,-,-,42,TK_Active,05/05/2021,05/05/2021,22/04/2022,,"SI20BAT2-85 FS","SI20BAT2-85","SI20BBT3-70 FS,SI20BBT2-46 FS","SI20BBT3-70,SI20BBT2-46",39,39,89,,9,9,20,,11,1072,"HK1003 -Blackpoint D2 - Rev.0E DD30092021"
1-1769,SI20SGY4A25,"TRANSPORT MAIN FIRE FIGHTING DETECTION SYSTEM SGY",5121,"HK1003-Rev.0E-3",TT_Task,"55902",-,-,-,0,TK_NotStart,01/04/2022,,26/05/2022,,"SI20SGY3A80 FS","SI20SGY3A80","SI20SGY4A40 FS","SI20SGY4A40",86,,94,,20,,22,,55,1952,"HK1003 -Blackpoint D2 - Rev.0E DD30092021"
1-1770,SI20UHA2B-9,"MANUFACTURING FOR EMBEDDED PARTS 20UHA",5121,"HK1003-Rev.0E-3",TT_Task,"55902",-,-,-,100,TK_Complete,04/05/2021,04/05/2021,06/07/2021,06/07/2021,"SI20UMC2B-15 FS,SI20UHA2B-8 FS,SI20UHA2B-7 FS","SI20UMC2B-15,SI20UHA2B-8,SI20UHA2B-7","SI20UHA2B-12 FS,SI20UHA2B-10 FS","SI20UHA2B-12,SI20UHA2B-10",39,39,48,48,9,9,11,11,11,,"HK1003 -Blackpoint D2 - Rev.0E DD30092021"
1-1771,SI20UMC2B-25,"MANUFACTURING FOR EMBEDDED PARTS 20UMC",5121,"HK1003-Rev.0E-3",TT_Task,"55902",-,-,-,100,TK_Complete,31/03/2021,31/03/2021,15/06/2021,15/06/2021,"SI20UMC2B-20 FS,SI20UMC2B-15 FS","SI20UMC2B-20,SI20UMC2B-15","SI20UMC2B-30 FS","SI20UMC2B-30",34,34,45,45,8,8,10,10,7,,"HK1003 -Blackpoint D2 - Rev.0E DD30092021"
1-1772,SI20SA-2-80,"QUOTATION STAGE HVAC SYSTEM SA",5121,"HK1003-Rev.0E-3",TT_Task,"55902",-,-,-,100,TK_Complete,09/04/2021,09/04/2021,01/08/2021,01/08/2021,"SI20SA-2-75 FS","SI20SA-2-75","SI20SA-2-85 FS,SI20SA-2-86 FS","SI20SA-2-85,SI20SA-2-86",35,35,52,52,8,8,12,12,7,,"HK1003 -Blackpoint D2 - Rev.0E DD30092021"
1-1773,SI20SA-2-75,"PREPARATION RFQ HVAC SYSTEM SA",5121,"HK1003-Rev.0E-3",TT_Task,"55902",-,-,-,100,TK_Complete,05/03/2021,05/03/2021,08/04/2021,08/04/2021,"SI--3331-32 FS,SI--3331-35 FS,SI--SA-2-01 FS,SI--SA-2-27 FS","SI--3331-32,SI--3331-35,SI--SA-2-01,SI--SA-2-27","SI20SA-2-80 FS,SI--SA-2-31 FS","SI20SA-2-80,SI--SA-2-31",30,30,35,35,7,7,8,8,5,,"HK1003 -Blackpoint D2 - Rev.0E DD30092021"
1-1774,SI20SA-2-85,"CONTRACT INTO FORCE HVAC SYSTEM SA",5121,"HK1003-Rev.0E-3",TT_Mile,"55902",-,-,-,100,TK_Complete,02/08/2021,02/08/2021,02/08/2021,02/08/2021,"SI20SA-2-80 FS,SI--SA-2-31 FS","SI20SA-2-80,SI--SA-2-31","SI20S--3J25 FS,SI20SAM3E31 FS,SI20SAM3E25 FS,SI20S--2J29 FS","SI20S--3J25,SI20SAM3E31,SI20SAM3E25,SI20S--2J29",52,52,52,52,12,12,12,12,24,,"HK1003 -Blackpoint D2 - Rev.0E DD30092021"
1-1775,SP20UBA3H55,"INSTALL. COMP., INT. CABLING, FIRE PROT., SHOP TEST ELECTRICAL MODULES 20UBA7910/20",5121,"HK1003-Rev.0E-3",TT_Task,"55902",-,-,-,0,TK_NotStart,25/02/2022,,05/05/2022,,"SP20SGJ3-55 FS,SP20CJT4-10 FS,SP20CJT4-25 FS,SI--UBA3K50 FS,SI20UBA4-50 FS,SP--B--2-13 FS,SI20UBA2K3 FS,SI--CKA2-04 FS","SP20SGJ3-55,SP20CJT4-10,SP20CJT4-25,SI--UBA3K50,SI20UBA4-50,SP--B--2-13,SI20UBA2K3,SI--CKA2-04","SP20UBA3-70 FS","SP20UBA3-70",81,,91,,19,,21,,51,584,"HK1003 -Blackpoint D2 - Rev.0E DD30092021"
1-1776,SI20M--9-55,"BYPASS OPERATION FOR ST 20",5121,"HK1003-Rev.0E-3",TT_Task,"55902",-,-,-,0,TK_NotStart,25/07/2023,,31/07/2023,,"SI20MB-9-10 SS,SI20CFE8-35 FS,SI20BZL8E25 FS,SI20M--9-50 SS","SI20MB-9-10,SI20CFE8-35,SI20BZL8E25,SI20M--9-50","SI20M--9-60 FS","SI20M--9-60",155,,156,,36,,36,,99,0,"HK1003 -Blackpoint D2 - Rev.0E DD30092021"
1-1777,SI20QU-4-40,"(OTD-OS) ON SITE SAMPLING CONTAINER 20QU",5121,"HK1003-Rev.0E-3",TT_FinMile,"55902",-,-,-,0,TK_NotStart,03/11/2022,,03/11/2022,,"SI20QU-4-25 FS","SI20QU-4-25","SI20QU-6H15 FS,SI20QU-6-15 FS","SI20QU-6H15,SI20QU-6-15",117,,117,,27,,27,,84,912,"HK1003 -Blackpoint D2 - Rev.0E DD30092021"
1-1778,SI20UBX5C15,"ERECTION ROOF DECKING 20UBX",5121,"HK1003-Rev.0E-3",TT_Task,"55902",-,-,-,0,TK_NotStart,02/09/2022,,08/09/2022,,"SI20UBX5C10 FS","SI20UBX5C10","SI20UBX5E45 FS","SI20UBX5E45",108,,109,,25,,25,,80,520,"HK1003 -Blackpoint D2 - Rev.0E DD30092021"
1-1779,SI20UHA5-15,"CONSTRUCTION FOUNDATION 20UHA",5121,"HK1003-Rev.0E-3",TT_Task,"55902",-,-,-,0,TK_NotStart,16/10/2021,,14/12/2021,,"SI20UHA2B-12 FS,SI20UHA5-10 SS,SI20UHA5-15.12 FF","SI20UHA2B-12,SI20UHA5-10,SI20UHA5-15.12","SI20UHA5-45 FS,SI20UMY5-05 SS,SI20BAW5C23 FS","SI20UHA5-45,SI20UMY5-05,SI20BAW5C23",63,,71,,14,,16,,34,56,"HK1003 -Blackpoint D2 - Rev.0E DD30092021"
1-1780,SI20UHA5-10,"(H) START PLACING FORMWORK 20UHA",5121,"HK1003-Rev.0E-3",TT_Mile,"55902",-,-,-,0,TK_NotStart,02/10/2021,,02/10/2021,,"SI20UHA5-05 FS,SI-----5-21& FS,SI--UHA2-79 FS,SI--UHA2-81 FS,SI--UHA2-82 FS","SI20UHA5-05,SI-----5-21&,SI--UHA2-79,SI--UHA2-81,SI--UHA2-82","SI20UHA5-15.00 FS,SI20UHA5-15 SS","SI20UHA5-15.00,SI20UHA5-15",61,,61,,14,,14,,31,168,"HK1003 -Blackpoint D2 - Rev.0E DD30092021"
1-1781,SI20BFC8-25,"COMMISSIONING LV SWITCHGEAR 20BFC/BFD",5121,"HK1003-Rev.0E-3",TT_Task,"55902",-,-,-,0,TK_NotStart,18/04/2023,,01/05/2023,,"SI20SGM8-33 FS,SI20BFC8-10 FS,SI20SGY6-22 FS,SI20BBA8-25 FS,SI-PM-40 FS,SI20UBA8G26 FS","SI20SGM8-33,SI20BFC8-10,SI20SGY6-22,SI20BBA8-25,SI-PM-40,SI20UBA8G26","SI20UBA8-50 SS","SI20UBA8-50",141,,143,,33,,33,,95,200,"HK1003 -Blackpoint D2 - Rev.0E DD30092021"
1-1782,SI20BFC4-10,"TRANSPORT TO WORKSHOP LV- / DC-SWITCHGEAR 20BFC/BFD (only as ELECTRICAL MODULES)",5121,"HK1003-Rev.0E-3",TT_Task,"55902",-,-,-,0,TK_NotStart,15/06/2022,,16/06/2022,,"SI20BFC3-25 FS","SI20BFC3-25","SI20UBA3K55 FS,SI20UBA3K50 FS,SI20UBA4-70 FS","SI20UBA3K55,SI20UBA3K50,SI20UBA4-70",97,,97,,22,,22,,69,80,"HK1003 -Blackpoint D2 - Rev.0E DD30092021"
1-1783,SI20BFC3-25,"MANUFACTURING / SHOP TEST LV- / DC-SWITCHGEAR 20BFC/BFD",5121,"HK1003-Rev.0E-3",TT_Task,"55902",-,-,-,0,TK_NotStart,16/02/2022,,14/06/2022,,"SI20BFC2Z77 FS,SI20BFA2-85 FS,SI--B--2A55 FS,SI--2222-30 FS,SI20BFC3-24 FS","SI20BFC2Z77,SI20BFA2-85,SI--B--2A55,SI--2222-30,SI20BFC3-24","SI20BFC4-10 FS","SI20BFC4-10",80,,97,,18,,22,,50,80,"HK1003 -Blackpoint D2 - Rev.0E DD30092021"
1-1784,SI--SGA4A25,"TRANSPORT FIRE FIGHTING RING MAIN SGA",5121,"HK1003-Rev.0E-3",TT_Task,"55902",-,-,-,0,TK_NotStart,06/05/2022,,30/06/2022,,"SI--SGA3A80 FS","SI--SGA3A80","SI--SGA4A40 FS","SI--SGA4A40",91,,99,,21,,23,,63,208,"HK1003 -Blackpoint D2 - Rev.0E DD30092021"
1-1785,SI20UBA4K25,"TRANSPORT ELECTRICAL MODULES 20UBA8110/20",5121,"HK1003-Rev.0E-3",TT_Task,"55902",-,-,-,0,TK_NotStart,23/09/2022,,17/11/2022,,"SI20UBA3K80 FS","SI20UBA3K80","SI20UBA7-16 FS,SI20UBA3K81 FS","SI20UBA7-16,SI20UBA3K81",111,,119,,26,,27,,81,80,"HK1003 -Blackpoint D2 - Rev.0E DD30092021"
1-1786,SI20EK-8H14,"(TOP-20EKT20) FUEL GAS PREHEATING SYSTEM - WATER SIDE",5121,"HK1003-Rev.0E-3",TT_FinMile,"55902",-,-,-,0,TK_NotStart,20/05/2023,,20/05/2023,,"SI20EKG6I15 FS,SI20EK-7H15 FS,SI20EKG6H15 FS,SI20EK-6-15 FS,SI20EK-7-25 FS,SI20UEN5D45 FS,SI20EK-7I15 FS,SI20MBA8-23& FS","SI20EKG6I15,SI20EK-7H15,SI20EKG6H15,SI20EK-6-15,SI20EK-7-25,SI20UEN5D45,SI20EK-7I15,SI20MBA8-23&","SI20EK-8-99 FS,SI20EK-7-95 FS","SI20EK-8-99,SI20EK-7-95",146,,146,,34,,34,,97,32,"HK1003 -Blackpoint D2 - Rev.0E DD30092021"
1-1787,SI--BHT7-20,"ERECTION LV TRANSFORMER 20BFT03/04",5121,"HK1003-Rev.0E-3",TT_Task,"55902",-,-,-,0,TK_NotStart,22/11/2022,,18/12/2022,,"SI--BHT4-40 FS,SI20UBD5-58 FS,SI--BHT7-15 FS,SI20BFT4-40 FS,SI20UBD5C-48 FS,SI20UBA7-27 FS","SI--BHT4-40,SI20UBD5-58,SI--BHT7-15,SI20BFT4-40,SI20UBD5C-48,SI20UBA7-27","SI--BFT8-10 FS,SI20SGC6J21 SS,SI20SGY7-18 FS,SI20BZK7D11# FF,SI20BZK7D11# SS,SI--BFT8-26 FS","SI--BFT8-10,SI20SGC6J21,SI20SGY7-18,SI20BZK7D11#,SI20BZK7D11#,SI--BFT8-26",120,,124,,28,,28,,85,200,"HK1003 -Blackpoint D2 - Rev.0E DD30092021"
1-1788,SI20UBA5-05,"WORK PREPARATION FOUNDATION 20UBA7910/20 (INCL. UBS OPENING)",5121,"HK1003-Rev.0E-3",TT_Task,"55902",-,-,-,0,TK_NotStart,09/04/2022,,29/04/2022,,"SI--UBA2A75 FS,SI20UBF5E45 FF,SI-----5-21& FS,SI-----5-20 FS,SI-P222-84 FS,SI-P222-128 FS,SI--UBA2-110 FS","SI--UBA2A75,SI20UBF5E45,SI-----5-21&,SI-----5-20,SI-P222-84,SI-P222-128,SI--UBA2-110","SI20UBA5-10 FS,SI-P222-131# FF,SI-P222-131# SS","SI20UBA5-10,SI-P222-131#,SI-P222-131#",88,,90,,20,,21,,57,968,"HK1003 -Blackpoint D2 - Rev.0E DD30092021"
1-1789,SI20UBA5-10,"(H) START PLACING FORMWORK 20UBA7910/20",5121,"HK1003-Rev.0E-3",TT_Mile,"55902",-,-,-,0,TK_NotStart,30/04/2022,,30/04/2022,,"SI20UBA5-05 FS,SI-----5-21& FS,SI--2222-132 FS,SI--UBA2A76 FS","SI20UBA5-05,SI-----5-21&,SI--2222-132,SI--UBA2A76","SI20UBA5-15 FS,SI20UBA5-15.0 FS","SI20UBA5-15,SI20UBA5-15.0",91,,91,,21,,21,,60,968,"HK1003 -Blackpoint D2 - Rev.0E DD30092021"
1-1790,SI20UBF5-17,"OIL RESISTANT PAINT 20UBE/UBF",5121,"HK1003-Rev.0E-3",TT_Task,"55902",-,-,-,0,TK_NotStart,09/04/2022,,22/04/2022,,"SI20UBE5E47 FS","SI20UBE5E47","SI20BZP7-50 FS,SI20UBF5E45 FS","SI20BZP7-50,SI20UBF5E45",88,,89,,20,,20,,57,144,"HK1003 -Blackpoint D2 - Rev.0E DD30092021"
1-1791,SI20UMC5Z15,"WORK PREPARATION / PILE TRIMMING / PLATE WELDING CEP/LDK - PIT 20UMC",5121,"HK1003-Rev.0E-3",TT_Task,"55902",-,-,-,100,TK_Complete,02/07/2021,02/07/2021,22/07/2021,22/07/2021,"SI-----5-22 FS,SI-----5-21& FS,SI-----5-20 FS,SI--UMC2Y75 FS,SI--5555-15 FS,SI--UMC2A85 FS,SI-P222-147 FS,SI-P222-84 FS,SI-P222-87 FF,SI-P222-88 FS,SI-P222-128 FS","SI-----5-22,SI-----5-21&,SI-----5-20,SI--UMC2Y75,SI--5555-15,SI--UMC2A85,SI-P222-147,SI-P222-84,SI-P222-87,SI-P222-88,SI-P222-128","SI20UMC5Y15 FS,SI20UMC5A15#1 SS,SI20UMC5Z46 SS,SI-P222-131# FF,SI-P222-131# SS,SI20UMC5-05# SS,SI20UMC5Y10 FS","SI20UMC5Y15,SI20UMC5A15#1,SI20UMC5Z46,SI-P222-131#,SI-P222-131#,SI20UMC5-05#,SI20UMC5Y10",47,47,50,50,11,11,11,11,20,,"HK1003 -Blackpoint D2 - Rev.0E DD30092021"
1-1792,SI20MB-6-10&,"PLACING GT20",5121,"HK1003-Rev.0E-3",TT_Mile,"55902",-,-,-,0,TK_NotStart,06/08/2022,,06/08/2022,,"SI-----1-05 FS","SI-----1-05","SI20MB-6-10 SS","SI20MB-6-10",105,,105,,24,,24,,77,168,"HK1003 -Blackpoint D2 - Rev.0E DD30092021"
1-1793,SI20MB-8-25&,"START COLD COMMISSIONING GT/GEN 20",5121,"HK1003-Rev.0E-3",TT_Mile,"55902",-,-,-,0,TK_NotStart,26/04/2023,,26/04/2023,,"SI20SGY7A28 FS","SI20SGY7A28","SI20MBA8-23& SS","SI20MBA8-23&",142,,142,,33,,33,,96,24,"HK1003 -Blackpoint D2 - Rev.0E DD30092021"
1-1794,SI20MA-6-16&,"CHEMICAL CLEANING COMPLETED",5121,"HK1003-Rev.0E-3",TT_FinMile,"55902",-,-,-,0,TK_NotStart,02/06/2023,,02/06/2023,,"","","SI20--P6-75 FF","SI20--P6-75",147,,147,,34,,34,,97,0,"HK1003 -Blackpoint D2 - Rev.0E DD30092021"
1-1795,SI20MAG6-04,"FITTING AND WELDING OF FIXING AND GUIDE POINTS MAG20",5121,"HK1003-Rev.0E-3",TT_Task,"55902",-,-,-,0,TK_NotStart,23/05/2022,,25/05/2022,,"SI20MAG6-02 SS","SI20MAG6-02","SI20MAG6-14 FS,SI20MAG6-06 FS,SI20MAJ6-25 FS","SI20MAG6-14,SI20MAG6-06,SI20MAJ6-25",94,,94,,22,,22,,66,144,"HK1003 -Blackpoint D2 - Rev.0E DD30092021"
1-1796,SI20UPY5P45,"(RFE) CONCRETE STRUCTURE READY 20UPY",5121,"HK1003-Rev.0E-3",TT_FinMile,"55902",-,-,-,0,TK_NotStart,03/01/2022,,03/01/2022,,"SI20PAB5-75 FS,SI20UPY5P15 FS,SI20UPY5P15.03 FS","SI20PAB5-75,SI20UPY5P15,SI20UPY5P15.03","SI20PAB6A15 FS,SI20UPY6M10 FS","SI20PAB6A15,SI20UPY6M10",74,,74,,17,,17,,44,2184,"HK1003 -Blackpoint D2 - Rev.0E DD30092021"
1-1797,SI20LCL4B25,"TRANSPORT BOILER BLOWDOWN PUMP 20LCL",5121,"HK1003-Rev.0E-3",TT_Task,"55902",-,-,-,0,TK_NotStart,27/05/2022,,21/07/2022,,"SI20LCL3B80 FS","SI20LCL3B80","SI20LCL4B40 FS","SI20LCL4B40",94,,102,,22,,23,,66,336,"HK1003 -Blackpoint D2 - Rev.0E DD30092021"
1-1798,SI20LCL3B80,"(RFS) READY FOR SHIPMENT BOILER BLOWDOWN PUMP 20LCL",5121,"HK1003-Rev.0E-3",TT_FinMile,"55902",-,-,-,0,TK_NotStart,26/05/2022,,26/05/2022,,"SI20LCL4B10 FS,SI20LCL3B26 FS","SI20LCL4B10,SI20LCL3B26","SI20LCL2B05 FS,SI20LCL4B25 FS","SI20LCL2B05,SI20LCL4B25",94,,94,,22,,22,,66,336,"HK1003 -Blackpoint D2 - Rev.0E DD30092021"
1-1799,SI20LBA8J25,"COLD COMMISSIONING LP MAIN STEAM SYSTEM (FOR CHEM. CLEANING) LBA80",5121,"HK1003-Rev.0E-3",TT_Task,"55902",-,-,-,0,TK_NotStart,18/04/2023,,01/05/2023,,"SI20CPC8-27 FS,SI20LBA8J10 FS,SI--2222-37 SS,SI20BF-8-25 SS,SI-PM-40 FS,SI20LBA8H25 SS","SI20CPC8-27,SI20LBA8J10,SI--2222-37,SI20BF-8-25,SI-PM-40,SI20LBA8H25","SI--L--8A25# FF,SI20--P6-75 FS,SI--L--8A25# SS,SI20LBB8H25 SS","SI--L--8A25#,SI20--P6-75,SI--L--8A25#,SI20LBB8H25",141,,143,,33,,33,,95,56,"HK1003 -Blackpoint D2 - Rev.0E DD30092021"
1-1800,SI20QU-3-80,"(RFS) READY FOR SHIPMENT SAMPLING CONTAINER 20QU",5121,"HK1003-Rev.0E-3",TT_FinMile,"55902",-,-,-,0,TK_NotStart,15/01/2022,,15/01/2022,,"SI20QU-4B10 FS","SI20QU-4B10","SI20QU-2-06 FS,SI20QU-4-25 FS","SI20QU-2-06,SI20QU-4-25",76,,76,,17,,17,,45,2800,"HK1003 -Blackpoint D2 - Rev.0E DD30092021"
1-1801,SI20QU-3-26,"MANUFACTURING SAMPLING CONTAINER 20QU",5121,"HK1003-Rev.0E-3",TT_Task,"55902",-,-,-,18,TK_Active,12/09/2021,12/09/2021,18/12/2021,,"SI20QU-3-25 FS,SI20QU-2-85 FS,SI--2222-30 FS","SI20QU-3-25,SI20QU-2-85,SI--2222-30","SI20QU-3B70 FS","SI20QU-3B70",58,58,72,,13,13,16,,29,2800,"HK1003 -Blackpoint D2 - Rev.0E DD30092021"
1-1802,SI20QC-8-25,"COLD COMMISSIONING DOSING / SAMPLING SYSTEMS QCD/QCL",5121,"HK1003-Rev.0E-3",TT_Task,"55902",-,-,-,0,TK_NotStart,14/05/2023,,27/05/2023,,"SI20QU-8-10 FS,SI20QCD8-10 FS,SI20QCB8-10 FS,SI20QCC8-10 FS,SI20BFG8-50 FS,SI20CPC8-27 FS,SI-PM-40 FS,SI20B--8-50 FS,SI20TPM10A8-30 FS,SI20TPI15A8-30 FS","SI20QU-8-10,SI20QCD8-10,SI20QCB8-10,SI20QCC8-10,SI20BFG8-50,SI20CPC8-27,SI-PM-40,SI20B--8-50,SI20TPM10A8-30,SI20TPI15A8-30","SI20HA-9A45 FS","SI20HA-9A45",145,,147,,33,,34,,97,64,"HK1003 -Blackpoint D2 - Rev.0E DD30092021"
1-1803,SI20CPC8-27,"COMMISSIONING ET200 STATIONS CPC",5121,"HK1003-Rev.0E-3",TT_Task,"55902",-,-,-,0,TK_NotStart,28/02/2023,,13/03/2023,,"SI20BFA8-25 FS,SI20CJ-8-25 SS,SI20CPC8-10 FS,SI-PM-40 FS","SI20BFA8-25,SI20CJ-8-25,SI20CPC8-10,SI-PM-40","SI20LCL8B25 FS,SI20LBA8H25 FS,SI20LBA8J25 FS,SI20LCA8M25 FS,SI20LBG8A25 FS,SI20CPD8-35 FS,SI20QCB8-25 FS,SI20PAD8-45 FS,SI20PGB8B25 FS,SI20LBH8D25 FS,SI20S--8-25 FS,SI20SGC8-37 FS,SI20QC-8-25 FS,SI20PAA8-20 FS,SI20LAC8B25 FS,SI20MA-9-05 FS,SI20CPC8A27 FS,SI20M--9-70 FS,SI20UBH8-27 FS","SI20LCL8B25,SI20LBA8H25,SI20LBA8J25,SI20LCA8M25,SI20LBG8A25,SI20CPD8-35,SI20QCB8-25,SI20PAD8-45,SI20PGB8B25,SI20LBH8D25,SI20S--8-25,SI20SGC8-37,SI20QC-8-25,SI20PAA8-20,SI20LAC8B25,SI20MA-9-05,SI20CPC8A27,SI20M--9-70,SI20UBH8-27",134,,136,,31,,31,,92,72,"HK1003 -Blackpoint D2 - Rev.0E DD30092021"
1-1804,SI20CPD8-35,"I&C FIELD COMMISSIONING AUX. POWER (90BBA)",5121,"HK1003-Rev.0E-3",TT_Task,"55902",-,-,-,0,TK_NotStart,14/03/2023,,27/03/2023,,"SI20CPC8-27 FS,SI20CPD8-36 FS","SI20CPC8-27,SI20CPD8-36","SI20M--9-70 FS,SI20MB-9-15 FS,SI20B--8-52 FS","SI20M--9-70,SI20MB-9-15,SI20B--8-52",136,,138,,31,,32,,92,72,"HK1003 -Blackpoint D2 - Rev.0E DD30092021"
1-1805,SI--2227-68,"MOBILISATION ERECTION CONTRACTOR (E AND I&C)",5121,"HK1003-Rev.0E-3",TT_Task,"55902",-,-,-,0,TK_NotStart,27/01/2022,,27/03/2022,,"SI--2222-32 SS,SI--2227-67 SS,SI20TPE9A7-28 FS","SI--2222-32,SI--2227-67,SI20TPE9A7-28","SI20BZP7-125 FS,SI20BZK7-130 FS,SI20BZP7-95 FS,SI20BZP7-135 FS,SI20BZP7-140 FS,SI20BZP7-60 FS,SI20BZP7-100 FS,SI20BZP7-110 FS,SI20BZP7-145 FS,SI20BZP7-80 FS,SI20BZP7-15 FS,SI20BZP7-20 FS,SI20BZP7-85 FS,SI20BZP7-115 FS,SI20UBA7-25 FS,SI20BFT7-15 FS,SI20UBA7-15 FS,SI20BZP7-50 FS,SI20BZP7-160 FS,SI20BZP7-75 FS,SI20BZP7-171 FS,SI20BZP7-172 FS,SI20BZP7-173 FS,SI20BFT7-16 FS,SI--PEE7-20 FS,SI20BZK7-187 FS,SI20MAA7A15 FS,SI20MAG7A15 FS,SI20MAJ7A15 FS,SI20MAL7A15 FS,SI20MAN7H15 FS,SI20MAV7H15 FS,SI20MAW7H15 FS,SI20MAX7H15 FS,SI20MB-7H15 FS,SI20MB-7J15 FS,SI20MBQ7H15 FS,SI20LBA7H15 FS,SI20LBA7H16 FS,SI20LBA7J15 FS,SI20LBA7J16 FS,SI20LBB7J15 FS,SI20LBB7J17 FS,SI20LBG7A17 FS,SI20LBG7A15 FS,SI20LAB7H15 FS,SI20LCA7A15 FS,SI20LCL7A15 FS,SI20LCW7H15 FS,SI20LDK7H16 FS,SI20EK-7H15 FS,SI20EK-7I15 FS,SI20PAB7A15 FS,SI20PAH7H15 FS,SI20PAR7A16 FS,SI20PCB7H15 FS,SI20PGB7H15 FS,SI20GHC7H15 FS,SI20GHC7H17 FS,SI20GHD7H15 FS,SI20QFB7H15 FS,SI20QU-7H15 FS,SI20BZK7E26 FS,SI20E--7-5& FS","SI20BZP7-125,SI20BZK7-130,SI20BZP7-95,SI20BZP7-135,SI20BZP7-140,SI20BZP7-60,SI20BZP7-100,SI20BZP7-110,SI20BZP7-145,SI20BZP7-80,SI20BZP7-15,SI20BZP7-20,SI20BZP7-85,SI20BZP7-115,SI20UBA7-25,SI20BFT7-15,SI20UBA7-15,SI20BZP7-50,SI20BZP7-160,SI20BZP7-75,SI20BZP7-171,SI20BZP7-172,SI20BZP7-173,SI20BFT7-16,SI--PEE7-20,SI20BZK7-187,SI20MAA7A15,SI20MAG7A15,SI20MAJ7A15,SI20MAL7A15,SI20MAN7H15,SI20MAV7H15,SI20MAW7H15,SI20MAX7H15,SI20MB-7H15,SI20MB-7J15,SI20MBQ7H15,SI20LBA7H15,SI20LBA7H16,SI20LBA7J15,SI20LBA7J16,SI20LBB7J15,SI20LBB7J17,SI20LBG7A17,SI20LBG7A15,SI20LAB7H15,SI20LCA7A15,SI20LCL7A15,SI20LCW7H15,SI20LDK7H16,SI20EK-7H15,SI20EK-7I15,SI20PAB7A15,SI20PAH7H15,SI20PAR7A16,SI20PCB7H15,SI20PGB7H15,SI20GHC7H15,SI20GHC7H17,SI20GHD7H15,SI20QFB7H15,SI20QU-7H15,SI20BZK7E26,SI20E--7-5&",77,,86,,18,,20,,47,328,"HK1003 -Blackpoint D2 - Rev.0E DD30092021"
1-1806,SI20BBA3-25,"DETAIL DESIGN / MANUFACTURING / SHOP TEST MV SWITCHGEAR 20/01BBA/BBB",5121,"HK1003-Rev.0E-3",TT_Task,"55902",-,-,-,29,TK_Active,14/08/2021,14/08/2021,21/01/2022,,"SI--BBA2-85 FS","SI--BBA2-85","SI20BBA4-10 FS","SI20BBA4-10",54,54,76,,12,12,17,,25,768,"HK1003 -Blackpoint D2 - Rev.0E DD30092021"
1-1807,SI--UMC2F75,"(F) DETAIL DESIGN STEEL PLATFORMS WITH CONTRACTOR COND. PIT DWGS LOT1 20UMC",5121,"HK1003-Rev.0E-3",TT_FinMile,"55902",-,-,-,0,TK_NotStart,19/10/2021,,19/10/2021,,"SI--UMC2E78 FS,SI--UMC2E70 FS,SI--UMC2B87 FS,SI20PAH2E60 FS,SI--UMC2B99 FS","SI--UMC2E78,SI--UMC2E70,SI--UMC2B87,SI20PAH2E60,SI--UMC2B99","SI20UMC3E25 FS","SI20UMC3E25",63,,63,,14,,14,,35,448,"HK1003 -Blackpoint D2 - Rev.0E DD30092021"
1-1808,SI--UMC2E70,"DETAIL DESIGN STEEL PLATFORMS LOT1 20UMC",5121,"HK1003-Rev.0E-3",TT_Task,"55902",-,-,-,100,TK_Complete,03/05/2021,03/05/2021,16/06/2021,16/06/2021,"SI20UMC2B10 FF,SI--UMC2E60 FS,SI--UMC2B70 SS,SI--UMC2E60 FF,SI--UMC2E79 FS,SI--UMC2E80 FS","SI20UMC2B10,SI--UMC2E60,SI--UMC2B70,SI--UMC2E60,SI--UMC2E79,SI--UMC2E80","SI--UMC2F75 FS,SI--UMC2B87 FS,SI--UMC2B89 FS,SI--UMC2E78 FF,SI--UMC2B99 FS","SI--UMC2F75,SI--UMC2B87,SI--UMC2B89,SI--UMC2E78,SI--UMC2B99",39,39,45,45,9,9,10,10,11,,"HK1003 -Blackpoint D2 - Rev.0E DD30092021"
1-1809,SI20UBA5B-50,"(RFE) STEEL STRUCTURE 20UBA1110/20",5121,"HK1003-Rev.0E-3",TT_FinMile,"55902",-,-,-,0,TK_NotStart,11/12/2022,,11/12/2022,,"SI20UBA5B-45 FS","SI20UBA5B-45","SI20UBA5-89 FS,SI20UBA7L16 FS,SI20BZL7A19 FS","SI20UBA5-89,SI20UBA7L16,SI20BZL7A19",123,,123,,28,,28,,86,288,"HK1003 -Blackpoint D2 - Rev.0E DD30092021"
1-1810,SI--UBA2-69,"DETAIL DESIGN CONCRETE STRUCTURE UBA7xxx",5121,"HK1003-Rev.0E-3",TT_Task,"55902",-,-,-,100,TK_Complete,29/05/2021,29/05/2021,27/07/2021,27/07/2021,"SI--UBA2-65 FS,SI--UBA2E60 FS,SI--UBA2E60 FF","SI--UBA2-65,SI--UBA2E60,SI--UBA2E60","SI20UBA2-50 FF,SI--UBA2-75 FS,SI20UBX2-25 FS,SI--UBA2B70 FF,SI--UBA2-92 FS","SI20UBA2-50,SI--UBA2-75,SI20UBX2-25,SI--UBA2B70,SI--UBA2-92",43,43,51,51,10,10,12,12,14,,"HK1003 -Blackpoint D2 - Rev.0E DD30092021"
1-1811,SI20CHA8-25,"COMMISSIONING UNIT PROTECTION FOR BAT/BBT 20CHA/CHY",5121,"HK1003-Rev.0E-3",TT_Task,"55902",-,-,-,0,TK_NotStart,14/03/2023,,27/03/2023,,"SI20UBF5D45 FS,SI20CHA8-10 FS,SI20BBT8-25 FS,SI20BAA7-15 SS,SI20BAT8-25 FF,SI20BFA8-25 FS,SI-PM-40 FS,SI20CHA8-11 FS","SI20UBF5D45,SI20CHA8-10,SI20BBT8-25,SI20BAA7-15,SI20BAT8-25,SI20BFA8-25,SI-PM-40,SI20CHA8-11","SI20CH-8A25 FS,SI20CJT8-20 FS,SI20CH-8-25 FS","SI20CH-8A25,SI20CJT8-20,SI20CH-8-25",136,,138,,31,,32,,92,16,"HK1003 -Blackpoint D2 - Rev.0E DD30092021"
1-1812,SI20BAT2-60,"(DF) INPUT FOR MS3 MAIN TRANSFORMERS BAT/BBT",5121,"HK1003-Rev.0E-3",TT_FinMile,"55902",-,-,-,100,TK_Complete,05/06/2021,05/06/2021,05/06/2021,05/06/2021,"SI20BAT2-85 FS,SI20BAT2-15 FS,SI-----1-01 SS","SI20BAT2-85,SI20BAT2-15,SI-----1-01","SI--UBF2-60 FS,SI--UBF2B60 SS","SI--UBF2-60,SI--UBF2B60",44,44,44,44,10,10,10,10,16,,"HK1003 -Blackpoint D2 - Rev.0E DD30092021"
1-1813,SI20PAH7H15,"ELECTRICAL ERECTION / VALVES 20PAH",5121,"HK1003-Rev.0E-3",TT_Task,"55902",-,-,-,0,TK_NotStart,14/02/2023,,20/02/2023,,"SI20PAH6H15 FF,SI20BZP7D18 FS,SI20BZP7D19 FS,SI20BZP7-5 FS,SI20BZP7-196 FS,SI20BZP7-174 FS,SI20UMY6M10 FS,SI20UMY6M11 FS,SI20UMY6M12 FS,SI--2227-68 FS,SI--BZP2-05 FS,SI--PEE7-20 FS,SI--BZP4B40 FS,SI20PAH6H16 FS","SI20PAH6H15,SI20BZP7D18,SI20BZP7D19,SI20BZP7-5,SI20BZP7-196,SI20BZP7-174,SI20UMY6M10,SI20UMY6M11,SI20UMY6M12,SI--2227-68,SI--BZP2-05,SI--PEE7-20,SI--BZP4B40,SI20PAH6H16","SI20PGB8-10 FS,SI20PAH8-25 FS,SI20PCB8M10 FS,SI20PCB8M25 FS,SI20BZK7D11# FF,SI20BZK7D11# SS","SI20PGB8-10,SI20PAH8-25,SI20PCB8M10,SI20PCB8M25,SI20BZK7D11#,SI20BZK7D11#",132,,133,,30,,31,,90,464,"HK1003 -Blackpoint D2 - Rev.0E DD30092021"
1-1814,SI20MKA6-35,"FINAL ALIGNMENT ROTOR GT20/GEN20 COMPLETE 20MKA",5121,"HK1003-Rev.0E-3",TT_Mile,"55902",-,-,-,0,TK_NotStart,30/08/2022,,30/08/2022,,"SI20MBA6-35 SS","SI20MBA6-35","SI20MKC7-16 FS,SI20MAV6-55 FS","SI20MKC7-16,SI20MAV6-55",108,,108,,25,,25,,79,1024,"HK1003 -Blackpoint D2 - Rev.0E DD30092021"
1-1815,SI20CPA8-25,"COMMISSIONING ET200 STATIONS GT/WSC 20CP/CJ",5121,"HK1003-Rev.0E-3",TT_Task,"55902",-,-,-,0,TK_NotStart,28/02/2023,,13/03/2023,,"SI--BRU8-21 SS,SI20UBA8G27 SS,SI20CPA8-10 FS,SI20CPD8-36 SS,SI-PM-40 FS,SI20CJ-8-25 SS","SI--BRU8-21,SI20UBA8G27,SI20CPA8-10,SI20CPD8-36,SI-PM-40,SI20CJ-8-25","SI20MB-8-25 FS,SI20MBL8-25 FS,SI20MBX8-25 FS,SI20CPA8A25 SS,SI20MBA8-25 FS,SI20MBX8E25 FS,SI20MBV8H25 FS,SI20MKA8-25 FS,SI20M--8-66 FS,SI20PGB8B25 SS,SI20CPC8-25 FS,SI20CPB8-25 FS,SI20UBH8-27 FS","SI20MB-8-25,SI20MBL8-25,SI20MBX8-25,SI20CPA8A25,SI20MBA8-25,SI20MBX8E25,SI20MBV8H25,SI20MKA8-25,SI20M--8-66,SI20PGB8B25,SI20CPC8-25,SI20CPB8-25,SI20UBH8-27",134,,136,,31,,31,,92,256,"HK1003 -Blackpoint D2 - Rev.0E DD30092021"
1-1816,SP20SGJ3-55,"TRANSPORT TO ELECTRICAL MODULES ASSEMBLY (UBA02) MB LOCAL FIRE ALARM PANEL 20SGJ / 20CYQ / 20CYE",5121,"HK1003-Rev.0E-3",TT_Task,"55902",-,-,-,0,TK_NotStart,22/02/2022,,24/02/2022,,"SP--SGJ2-85 FS","SP--SGJ2-85","SP20UBA3H55 FS","SP20UBA3H55",81,,81,,19,,19,,50,584,"HK1003 -Blackpoint D2 - Rev.0E DD30092021"
1-1817,SI--UMY2-30,"DETAIL DESIGN CONCRETE STRUCTURE 20ULY/UMY",5121,"HK1003-Rev.0E-3",TT_Task,"55902",-,-,-,100,TK_Complete,30/05/2021,30/05/2021,13/07/2021,13/07/2021,"SI--UMY2-77 FS,SI--UMY2-60 FS","SI--UMY2-77,SI--UMY2-60","SI--UMY2-78 FF,SI--UMY2-75 FS,SI20UMY2-50 FS","SI--UMY2-78,SI--UMY2-75,SI20UMY2-50",43,43,49,49,10,10,11,11,15,,"HK1003 -Blackpoint D2 - Rev.0E DD30092021"
1-1818,SI20BFA2-75,"RFQ LV- / DC-SWITCHGEAR BFA/BFB/BMA/BUA/BUB/BUC",5121,"HK1003-Rev.0E-3",TT_Mile,"55902",-,-,-,100,TK_Complete,14/05/2021,14/05/2021,14/05/2021,14/05/2021,"SI20BFA2-15 FS,SI--B--2A50 FS","SI20BFA2-15,SI--B--2A50","SI20BFA2-80 FS","SI20BFA2-80",40,40,40,40,9,9,9,9,12,,"HK1003 -Blackpoint D2 - Rev.0E DD30092021"
1-1819,SI20BFA2-80,"QUOTATION STAGE LV- / DC-SWITCHGEAR BFA/BFB/BMA/BUA/BUB/BUC",5121,"HK1003-Rev.0E-3",TT_Task,"55902",-,-,-,100,TK_Complete,14/05/2021,14/05/2021,29/06/2021,29/06/2021,"SI20BFA2-75 FS","SI20BFA2-75","SI20BFA2-85 FS","SI20BFA2-85",40,40,47,47,9,9,11,11,12,,"HK1003 -Blackpoint D2 - Rev.0E DD30092021"
1-1820,SI20BFA2-15,"BASIC DESIGN / SPECIFICATION LV- / DC-SWITCHGEAR BFA/BFB/BMA/BUA/BUB/BUC",5121,"HK1003-Rev.0E-3",TT_Task,"55902",-,-,-,100,TK_Complete,12/02/2021,12/02/2021,13/05/2021,13/05/2021,"SI--3331-32 FS,SI--3332-27 FS,SI--3332-25 SS","SI--3331-32,SI--3332-27,SI--3332-25","SI20BFA2-75 FS","SI20BFA2-75",27,27,40,40,6,6,9,9,4,,"HK1003 -Blackpoint D2 - Rev.0E DD30092021"
1-1821,SI20BFA2-85,"CONTRACT INTO FORCE LV- / DC-SWITCHGEAR BFA/BFB/BMA/BUA/BUB/BUC",5121,"HK1003-Rev.0E-3",TT_Mile,"55902",-,-,-,100,TK_Complete,30/07/2021,30/07/2021,30/07/2021,30/07/2021,"SI20BFA2-80 FS,SI--UBA2G85 FS","SI20BFA2-80,SI--UBA2G85","SI20BFC2Z85 FS,SI20BFA2-25 FS,SI20BFA3-25 FS,SI20BFC3-25 FS,SI--BFF2-85 FS,SI20BTA2-15 FS","SI20BFC2Z85,SI20BFA2-25,SI20BFA3-25,SI20BFC3-25,SI--BFF2-85,SI20BTA2-15",51,51,51,51,12,12,12,12,23,,"HK1003 -Blackpoint D2 - Rev.0E DD30092021"
1-1822,SI--UMC2Y60,"(MS3*) CONCRETE STRUCTURE FINAL DIMENSIONS, LOADS AVAILABLE CEP/LDK PIT 20UMC",5121,"HK1003-Rev.0E-3",TT_FinMile,"55902",-,-,-,100,TK_Complete,15/02/2021,15/02/2021,15/02/2021,15/02/2021,"SP--MB-2-85 FS","SP--MB-2-85","SI--UMC2Y70 FF","SI--UMC2Y70",28,28,28,28,6,6,6,6,4,,"HK1003 -Blackpoint D2 - Rev.0E DD30092021"
1-1823,SI--UMC2Y75,"(F) CONCRETE STRUCTURE DWGS ON SITE RELEASED FOR EXECUTION CEP/LDK PIT 20UMC (ATKINS)",5121,"HK1003-Rev.0E-3",TT_FinMile,"55902",-,-,-,100,TK_Complete,01/07/2021,01/07/2021,01/07/2021,01/07/2021,"SI--UMC2Y70 FS,SI--UMC2A81 FS","SI--UMC2Y70,SI--UMC2A81","SI20UMC5Y10 FS,SI20UMC5Z15 FS","SI20UMC5Y10,SI20UMC5Z15",47,47,47,47,11,11,11,11,19,,"HK1003 -Blackpoint D2 - Rev.0E DD30092021"
1-1824,SI20CH-8-25,"COMMISSIONING UNIT PROTECTION 20CHA (GENERATOR)",5121,"HK1003-Rev.0E-3",TT_Task,"55902",-,-,-,0,TK_NotStart,09/06/2023,,22/06/2023,,"SI20CH-8A25 FF,SI20CHA8-10 FS,SI-PM-40 FS,SI20CHA8-25 FS,SI20MKC8-75 FS,SI20CHA8-11 FS","SI20CH-8A25,SI20CHA8-10,SI-PM-40,SI20CHA8-25,SI20MKC8-75,SI20CHA8-11","SI20MKA9-35 FS,SI20M--9-70 FS,SI20MB-9-15 FS","SI20MKA9-35,SI20M--9-70,SI20MB-9-15",148,,150,,34,,35,,98,64,"HK1003 -Blackpoint D2 - Rev.0E DD30092021"
1-1825,SI20MBA2D85,"CONTRACT INTO FORCE WASH WATER TANK 20MBA",5121,"HK1003-Rev.0E-3",TT_Mile,"55902",-,-,-,100,TK_Complete,16/09/2021,16/09/2021,16/09/2021,16/09/2021,"SI20MBA2D80 FS","SI20MBA2D80","SI20MBA3-25 FS,SI20MBA3-84 FS","SI20MBA3-25,SI20MBA3-84",58,58,58,58,13,13,13,13,29,,"HK1003 -Blackpoint D2 - Rev.0E DD30092021"
1-1826,SI20HA-6-26,"ERECTION INTERNAL BAFFLE HRSG20",5121,"HK1003-Rev.0E-3",TT_Task,"55902",-,-,-,0,TK_NotStart,02/05/2022,,03/07/2022,,"SI20HB-6C28 FS,SI20HA-4G40 FS,SI20HA-4G50 FS","SI20HB-6C28,SI20HA-4G40,SI20HA-4G50","SI20HA-6-20 FF,SI20HA-6-56 FS","SI20HA-6-20,SI20HA-6-56",91,,100,,21,,23,,61,2056,"HK1003 -Blackpoint D2 - Rev.0E DD30092021"
1-1827,SI20SCA3-26,"MANUFACTURING / SHOP TEST AIR COMPRESSOR SYSTEM 20SCA",5121,"HK1003-Rev.0E-3",TT_Task,"55902",-,-,-,0,TK_NotStart,25/11/2021,,28/06/2022,,"SI20SCA3-25 FS,SI20SCA2-85 FS,SI--2222-30 FS","SI20SCA3-25,SI20SCA2-85,SI--2222-30","SI20SCA3-80 FS,SI20SCA3B70 FS,SI20SCA2-05 SS","SI20SCA3-80,SI20SCA3B70,SI20SCA2-05",68,,99,,16,,23,,39,288,"HK1003 -Blackpoint D2 - Rev.0E DD30092021"
1-1828,SP20MBR2-60,"(DF) INPUT FOR MS3 DIFFUSER 20MBR",5121,"HK1003-Rev.0E-3",TT_Mile,"55902",-,-,-,100,TK_Complete,30/06/2021,30/06/2021,30/06/2021,30/06/2021,"SP20MBR2A85 SS,SI20MBR2B66 SS","SP20MBR2A85,SI20MBR2B66","SI--UMX2-60 FS","SI--UMX2-60",47,47,47,47,11,11,11,11,19,,"HK1003 -Blackpoint D2 - Rev.0E DD30092021"
1-1829,SP20MA-3-81,"DELIVERY STEAM TURBINE MA- EX WORKS (MUELHEIM)",5121,"HK1003-Rev.0E-3",TT_Mile,"55902",-,-,-,0,TK_NotStart,16/04/2022,,16/04/2022,,"SP20MA-3-25 FS","SP20MA-3-25","SP20MA-3-70 SS","SP20MA-3-70",89,,89,,20,,20,,58,96,"HK1003 -Blackpoint D2 - Rev.0E DD30092021"
1-1830,SI--EK-2-06,"P&ID INPUT AGREED WITH BOP-PIPING FUEL GAS RECEIVING AND MIXING SYSTEM EK",5121,"HK1003-Rev.0E-3",TT_Mile,"55902",-,-,-,100,TK_Complete,31/03/2021,31/03/2021,31/03/2021,31/03/2021,"SI--EK-2-77 FS,SI--EK-2-75 FS","SI--EK-2-77,SI--EK-2-75","SI---2P2A10 SS","SI---2P2A10",34,34,34,34,8,8,8,8,7,,"HK1003 -Blackpoint D2 - Rev.0E DD30092021"
1-1831,SI--EK-2-67,"(DF) INPUT FOR M2 FUEL GAS RECEIVING AND MIXING SYSTEM EK",5121,"HK1003-Rev.0E-3",TT_FinMile,"55902",-,-,-,100,TK_Complete,18/07/2021,18/07/2021,18/07/2021,18/07/2021,"SI--EK-2-86 SS","SI--EK-2-86","SI-P222-62 FS,SI---2P2A10 FS","SI-P222-62,SI---2P2A10",50,50,50,50,11,11,11,11,22,,"HK1003 -Blackpoint D2 - Rev.0E DD30092021"
1-1832,SP20SGJ3-25,"DETAIL DESIGN / MANUFACTURING FIRE FIGHTING / GAS DETECTION 20SGJ / 20CYQ / 20CYE",5121,"HK1003-Rev.0E-3",TT_Task,"55902",-,-,-,42,TK_Active,04/07/2021,04/07/2021,28/01/2022,,"SI--SG-2-50 FS,SP--SGJ2-85 FS,SI--SG-2-95 FS","SI--SG-2-50,SP--SGJ2-85,SI--SG-2-95","SP20SGJ3-70 FS","SP20SGJ3-70",48,48,77,,11,11,18,,20,1736,"HK1003 -Blackpoint D2 - Rev.0E DD30092021"
1-1833,SP20MBL3-25,"MANUFACTURING AIR INTAKE SYSTEM 20MBL",5121,"HK1003-Rev.0E-3",TT_Task,"55902",-,-,-,0,TK_NotStart,01/10/2021,,04/05/2022,,"SP20MBL2-87 FS,SP20MBL2-95 FS,SP20MBL2-85 SS,SP20MBL2-97 SS,SP20MBL2-85 FS,SP20MBL2-97 FF,SP20MB-3-25 FF","SP20MBL2-87,SP20MBL2-95,SP20MBL2-85,SP20MBL2-97,SP20MBL2-85,SP20MBL2-97,SP20MB-3-25","SP20MBL3-70 FS","SP20MBL3-70",60,,91,,14,,21,,30,184,"HK1003 -Blackpoint D2 - Rev.0E DD30092021"
1-1834,SP20MB-3A25,"DESIGN / MANUFACTURING GT INTERCONNECTING PIPING 20MB-",5121,"HK1003-Rev.0E-3",TT_Task,"55902",-,-,-,0,TK_NotStart,30/10/2021,,13/05/2022,,"SP--MB-2A85 FS,SP20MB-3-25 FF","SP--MB-2A85,SP20MB-3-25","SI20MB-3-71 FS","SI20MB-3-71",65,,92,,15,,21,,36,376,"HK1003 -Blackpoint D2 - Rev.0E DD30092021"
1-1835,SI20HA-8-65,"HRSG PROTECTION TESTS 20HA",5121,"HK1003-Rev.0E-3",TT_Task,"55902",-,-,-,0,TK_NotStart,21/06/2023,,22/06/2023,,"SI--C--8-58 FS","SI--C--8-58","SI20HA-9A45 FS,SI20--P8A25# FF,SI20MB-9-15 FS,SI20HA-8-25# FF,SI20HA-6-70& FS","SI20HA-9A45,SI20--P8A25#,SI20MB-9-15,SI20HA-8-25#,SI20HA-6-70&",150,,150,,35,,35,,99,8,"HK1003 -Blackpoint D2 - Rev.0E DD30092021"
1-1836,SI20BZP7-135,"ERECTION CABLE TRAYS FOR 20ULA",5121,"HK1003-Rev.0E-3",TT_Task,"55902",-,-,-,0,TK_NotStart,30/07/2022,,19/08/2022,,"SI--PEE7-20 FS,SI--2227-68 FS,SI--BZP2-05 FS,SI--BZP4B40 FS,SI20LAC6B40 FS,SI20BZP7-125 SS,SI20BZP7-26 FS,SI20BZP7-125 FF,SI--PEE7-20 SS,SI20LCL6B15 SS","SI--PEE7-20,SI--2227-68,SI--BZP2-05,SI--BZP4B40,SI20LAC6B40,SI20BZP7-125,SI20BZP7-26,SI20BZP7-125,SI--PEE7-20,SI20LCL6B15","SI20BZL7C15 FS,SI20LAC7B15 FS,SI20BZP7B10# FF,SI20BZP7B10# SS,SI20BZP7-189 FS,SI20BZK7-200 FS,SI20BZK7-187 FS,SI20BZK7-130 FS,SI20BZK7-190 FS","SI20BZL7C15,SI20LAC7B15,SI20BZP7B10#,SI20BZP7B10#,SI20BZP7-189,SI20BZK7-200,SI20BZK7-187,SI20BZK7-130,SI20BZK7-190",104,,106,,24,,24,,76,336,"HK1003 -Blackpoint D2 - Rev.0E DD30092021"
1-1837,SI20UMC5Y10,"(H) START PLACING FORMWORK CEP/LDK PIT 20UMC",5121,"HK1003-Rev.0E-3",TT_Mile,"55902",-,-,-,100,TK_Complete,23/07/2021,23/07/2021,23/07/2021,23/07/2021,"SI--UMC2Y75 FS,SI-----5-21& FS,SI20UMC2B70 FS,SI20UMC5Z15 FS","SI--UMC2Y75,SI-----5-21&,SI20UMC2B70,SI20UMC5Z15","SI20UMC5Y15 FS","SI20UMC5Y15",50,50,50,50,11,11,11,11,22,,"HK1003 -Blackpoint D2 - Rev.0E DD30092021"
1-1838,SI20UMC5Y45,"(RFE) CONCRETE WORKS CEP/LDK PIT 20UMC",5121,"HK1003-Rev.0E-3",TT_FinMile,"55902",-,-,-,0,TK_NotStart,30/11/2021,,30/11/2021,,"SI20UMC5Y15 FS,SI20UMC5Y46 FS,SI20UMC5Y46.37 FS","SI20UMC5Y15,SI20UMC5Y46,SI20UMC5Y46.37","SI20UMC5B10 FS,SI20LCB6B15 FS,SI20UMC5A15#1 FF","SI20UMC5B10,SI20LCB6B15,SI20UMC5A15#1",69,,69,,16,,16,,40,344,"HK1003 -Blackpoint D2 - Rev.0E DD30092021"
1-1839,SI--EK-2-04,"P&ID INPUT AGREED WITH BOP-PIPING GAS FINAL FILTER/ PREHEATER 20EKG",5121,"HK1003-Rev.0E-3",TT_Mile,"55902",-,-,-,100,TK_Complete,19/07/2021,19/07/2021,19/07/2021,19/07/2021,"SI--EK-2-75 FS","SI--EK-2-75","SI---2P2A10 SS","SI---2P2A10",50,50,50,50,11,11,11,11,22,,"HK1003 -Blackpoint D2 - Rev.0E DD30092021"
1-1840,SI--EK-2-65,"(DF) INPUT FOR M2 GAS FINAL FILTER/ PREHEATER 20EKG",5121,"HK1003-Rev.0E-3",TT_FinMile,"55902",-,-,-,100,TK_Complete,11/07/2021,11/07/2021,11/07/2021,11/07/2021,"SI--EK-2-75 FF,SI-----1-01 SS,SI--EK-2-85 FS","SI--EK-2-75,SI-----1-01,SI--EK-2-85","SI---2P2A10 FF,SI---2P2A10 FS","SI---2P2A10,SI---2P2A10",49,49,49,49,11,11,11,11,21,,"HK1003 -Blackpoint D2 - Rev.0E DD30092021"
1-1841,SI--EK-2-75,"BASIC DESIGN / PREP. RFQ GAS FINAL FILTER/ PREHEATER 20EKG",5121,"HK1003-Rev.0E-3",TT_Task,"55902",-,-,-,100,TK_Complete,02/02/2021,02/02/2021,25/03/2021,25/03/2021,"SI--3331-32 FS,SI--SG-2-10 FS,SI-----1-03 FS,SI-----1-05 FS","SI--3331-32,SI--SG-2-10,SI-----1-03,SI-----1-05","SI--EK-2-65 FF,SI--EK-2-06 FS,SI--EK-2-20 FS,SI--EK-2-04 FS,SI--EK-2-80 FS","SI--EK-2-65,SI--EK-2-06,SI--EK-2-20,SI--EK-2-04,SI--EK-2-80",26,26,33,33,6,6,7,7,4,,"HK1003 -Blackpoint D2 - Rev.0E DD30092021"
1-1842,SI--EK-2-85,"CONTRACT INTO FORCE GAS FINAL FILTER/ PREHEATER 20EKG",5121,"HK1003-Rev.0E-3",TT_Mile,"55902",-,-,-,100,TK_Complete,28/06/2021,28/06/2021,28/06/2021,28/06/2021,"SI--EK-2-80 FS","SI--EK-2-80","SI--EK-2C60 FS,SI20EK-3-26 FS,SI--EK-2-91 FS,SI--EK-2-65 FS","SI--EK-2C60,SI20EK-3-26,SI--EK-2-91,SI--EK-2-65",47,47,47,47,11,11,11,11,19,,"HK1003 -Blackpoint D2 - Rev.0E DD30092021"
1-1843,SI--C--8-58,"OPTIMIZATION AUTOMATIC SEQUENCE CONTROL 20",5121,"HK1003-Rev.0E-3",TT_Task,"55902",-,-,-,0,TK_NotStart,18/06/2023,,20/06/2023,,"SI20LAC8B26 FS,SI20HA-8-35 FS,SI20LBA8-35 FS","SI20LAC8B26,SI20HA-8-35,SI20LBA8-35","SI20HA-8-65 FS","SI20HA-8-65",150,,150,,35,,35,,98,8,"HK1003 -Blackpoint D2 - Rev.0E DD30092021"
1-1844,SI--HB-3-25,"DETAIL DESIGN MAIN STEEL STRUCTURE HRSG",5121,"HK1003-Rev.0E-3",TT_Task,"55902",-,-,-,100,TK_Complete,27/01/2021,27/01/2021,12/03/2021,12/03/2021,"SI--HB-2B61 FS,SI--HB-2-15 FS,SI--HA-2-85 FS,SI--HA-2-85 SS","SI--HB-2B61,SI--HB-2-15,SI--HA-2-85,SI--HA-2-85","SI--HB-3C15 FS,SI--2222-60 FF,SI20HB-3E25 FF,SI20HB-3A25 FS","SI--HB-3C15,SI--2222-60,SI20HB-3E25,SI20HB-3A25",25,25,31,31,5,5,7,7,3,,"HK1003 -Blackpoint D2 - Rev.0E DD30092021"
1-1845,SP20MA-3-25,"MANUFACTURING STEAM TURBINE (HI-L)",5121,"HK1003-Rev.0E-3",TT_Task,"55902",-,-,-,20,TK_Active,13/08/2021,13/08/2021,15/04/2022,,"SP20MA-2-81 FS,SP20MB-3-26 FS,SI-----1-04 SS,SP20MA-3-82 FS,SI-----1-05 FS,SP20MA-3-89 FS","SP20MA-2-81,SP20MB-3-26,SI-----1-04,SP20MA-3-82,SI-----1-05,SP20MA-3-89","SP20MA-3C81 FS,SP20MA-3-81 FS,SI20MA-6A61 SS,SP20MAN3-26 SS,SP20MAV3-25 SS,SP20MAW3-25 SS,SP20MAX3-25 SS,SP20MA-3-92 SS,SP20MA-3-95 SS","SP20MA-3C81,SP20MA-3-81,SI20MA-6A61,SP20MAN3-26,SP20MAV3-25,SP20MAW3-25,SP20MAX3-25,SP20MA-3-92,SP20MA-3-95",53,53,88,,12,12,20,,25,8,"HK1003 -Blackpoint D2 - Rev.0E DD30092021"
1-1846,SI--HB-2D15,"BASIC DESIGN STACK HRSG incl. OUTLET DUCT",5121,"HK1003-Rev.0E-3",TT_Task,"55902",-,-,-,100,TK_Complete,04/12/2020,04/12/2020,14/01/2021,14/01/2021,"SI--HA-2-81 FS,SI--HA-2-10 FF","SI--HA-2-81,SI--HA-2-10","SI--HB-2D80 SS,SI--HB-2D62 FS","SI--HB-2D80,SI--HB-2D62",17,17,23,23,4,4,5,5,1,,"HK1003 -Blackpoint D2 - Rev.0E DD30092021"
1-1847,SP20MBR2A81,"QUOTATION STAGE DIFFUSER 20MBR",5121,"HK1003-Rev.0E-3",TT_Task,"55902",-,-,-,100,TK_Complete,12/03/2021,12/03/2021,10/06/2021,10/06/2021,"SP20MBR2A80 FS","SP20MBR2A80","SP20MBR2A85 FS","SP20MBR2A85",31,31,44,44,7,7,10,10,6,,"HK1003 -Blackpoint D2 - Rev.0E DD30092021"
1-1848,SP20MBR2A85,"CONTRACT INTO FORCE DIFFUSER 20MBR",5121,"HK1003-Rev.0E-3",TT_Mile,"55902",-,-,-,100,TK_Complete,11/06/2021,11/06/2021,11/06/2021,11/06/2021,"SP20MBR2A81 FS","SP20MBR2A81","SP20MBR2A70 FS,SP20MBR2-95 SS,SP20MBR2-87 SS,SP20MBR2-60 SS,SP20MBR3A25 SS,SI-P221-425& FS,SI20MBR2B64 FS,SI20MBR2B66 FS","SP20MBR2A70,SP20MBR2-95,SP20MBR2-87,SP20MBR2-60,SP20MBR3A25,SI-P221-425&,SI20MBR2B64,SI20MBR2B66",44,44,44,44,10,10,10,10,16,,"HK1003 -Blackpoint D2 - Rev.0E DD30092021"
1-1849,SP20MBR2-87,"INSPECTION PLAN DIFFUSER 20MBR",5121,"HK1003-Rev.0E-3",TT_Mile,"55902",-,-,-,100,TK_Complete,07/08/2021,07/08/2021,07/08/2021,07/08/2021,"SP20MBR2A85 SS","SP20MBR2A85","SI--UMX2-60 FS","SI--UMX2-60",53,53,53,53,12,12,12,12,25,,"HK1003 -Blackpoint D2 - Rev.0E DD30092021"
1-1850,SI20GHD8A25,"COLD COMMISSIONING SERVICE WATER DISTRIBUTION SYSTEM GHD",5121,"HK1003-Rev.0E-3",TT_Task,"55902",-,-,-,0,TK_NotStart,25/04/2023,,29/04/2023,,"SI--BRU8-21 FS,SI20GHD8A10 FS,SI-PM-40 FS,SI20B--8-50 FS,SI20B--8-52 FS,SI20B--8-50 SS,SI20B--8-52 SS","SI--BRU8-21,SI20GHD8A10,SI-PM-40,SI20B--8-50,SI20B--8-52,SI20B--8-50,SI20B--8-52","SI20GHD8A35 FS","SI20GHD8A35",142,,143,,33,,33,,96,64,"HK1003 -Blackpoint D2 - Rev.0E DD30092021"
1-1851,SI--BAC2-60,"(DF) INPUT FOR MS3 GEN. CIRCUIT BREAKER BAC",5121,"HK1003-Rev.0E-3",TT_FinMile,"55902",-,-,-,100,TK_Complete,13/08/2021,13/08/2021,13/08/2021,13/08/2021,"SI--BAC2-85 FS,SI-----1-01 SS","SI--BAC2-85,SI-----1-01","SI20UBX2-50 SS,SI20UBX2-10 FS","SI20UBX2-50,SI20UBX2-10",53,53,53,53,12,12,12,12,25,,"HK1003 -Blackpoint D2 - Rev.0E DD30092021"
1-1852,SI20PAS4B25,"TRANSPORT CT MAKE-UP WATER PUMP PAS",5121,"HK1003-Rev.0E-3",TT_Task,"55902",-,-,-,0,TK_NotStart,29/12/2021,,22/02/2022,,"SI20PAS3B80 FS","SI20PAS3B80","SI20PAS4B40 FS","SI20PAS4B40",73,,81,,17,,19,,43,2480,"HK1003 -Blackpoint D2 - Rev.0E DD30092021"
1-1853,SI20MAG6A45,"INSULATION PIPES / VALVES FOR CONDENSATION SYSTEM MAG",5121,"HK1003-Rev.0E-3",TT_Task,"55902",-,-,-,0,TK_NotStart,02/12/2022,,05/01/2023,,"SI20MAG6A15 FS,SI-P2I-15 FS","SI20MAG6A15,SI-P2I-15","SI20MAG7A15 FF,SI20MAG8-10 FS,SI20---6A15# FF","SI20MAG7A15,SI20MAG8-10,SI20---6A15#",121,,126,,28,,29,,86,792,"HK1003 -Blackpoint D2 - Rev.0E DD30092021"
1-1854,SI--SGA3A25,"DETAIL DESIGN / MANUFACTURING / SHOP TEST FIRE FIGHTING RING MAIN SGA",5121,"HK1003-Rev.0E-3",TT_Task,"55902",-,-,-,0,TK_NotStart,23/11/2021,,28/02/2022,,"SI--SG-2-85 FS,SI--SG-2-50 FS,SI--SG-2-50 SS,SI--SG-2-95 FS,SI20SG-3-25 SS","SI--SG-2-85,SI--SG-2-50,SI--SG-2-50,SI--SG-2-95,SI20SG-3-25","SI--SGA3A70 FS","SI--SGA3A70",68,,82,,15,,19,,39,512,"HK1003 -Blackpoint D2 - Rev.0E DD30092021"
1-1855,SI--BZP4B40,"(OTD-OS) ON SITE CABLE SUPPORT SYSTEM BZP (LOT 1)",5121,"HK1003-Rev.0E-3",TT_FinMile,"55902",-,-,-,0,TK_NotStart,19/04/2022,,19/04/2022,,"SI--BZP4-25 FS,SI--BZP2-05 FS","SI--BZP4-25,SI--BZP2-05","SI20BZK7-130 FS,SI20BZP7-115 FS,SI20BZP7-15 FS,SI20BZP7-60 FS,SI20BZP7-85 FS,SI20BZP7-145 FS,SI20BZP7-160 FS,SI20BZP7-135 FS,SI20BZP7-20 FS,SI20BZP7-95 FS,SI20BZP7-140 FS,SI20BZP7-80 FS,SI20BZP7-100 FS,SI20BZP7-110 FS,SI20BZP7-125 FS,SI20BZP7-50 FS,SI20BZP7-45 FS,SI20BZP7-120 FS,SI20BZP7-5 FS,SI20BZP7-35 FS,SI20BZP7-90 FS,SI20BZP7-55 FS,SI20BZP7-75 FS,SI20BZP7-105 FS,SI20BZP7-40 FS,SI20BZP7-150 FS,SI20BZP7-165 FS,SI20BZP7-155 FS,SI20BZP7-65 FS,SI20BZP7-70 FS,SI20BZP7-171 FS,SI20BZP7-26 FS,SI20BZP7-181 FS,SI20BZP7-182 FS,SI20BZP7-105 FF,SI20BZP7-191 FS,SI20BZP7-197 FS,SI20BZP7-198 FS,SI20BZP7-199 FS,SI20BZK7-187 FS,SI20MAA7A15 FS,SI20MAG7A15 FS,SI20MAJ7A15 FS,SI20MAL7A15 FS,SI20MAN7H15 FS,SI20MAV7H15 FS,SI20MAW7H15 FS,SI20MAX7H15 FS,SI20MB-7H15 FS,SI20MB-7J15 FS,SI20MBQ7H15 FS,SI20LBA7H15 FS,SI20LBA7H16 FS,SI20LBA7J15 FS,SI20LBA7J16 FS,SI20LBB7J15 FS,SI20LBB7J17 FS,SI20LBG7A17 FS,SI20LBG7A15 FS,SI20LAB7H15 FS,SI20LCA7A15 FS,SI20LCL7A15 FS,SI20LCW7H15 FS,SI20LDK7H16 FS,SI20EK-7H15 FS,SI20EK-7I15 FS,SI20PAB7A15 FS,SI20PAH7H15 FS,SI20PAR7A16 FS,SI20PCB7H15 FS,SI20PGB7H15 FS,SI20GHC7H15 FS,SI20GHC7H17 FS,SI20GHD7H15 FS,SI20QFB7H15 FS,SI20QU-7H15 FS,SI20BZK7E26 FS","SI20BZK7-130,SI20BZP7-115,SI20BZP7-15,SI20BZP7-60,SI20BZP7-85,SI20BZP7-145,SI20BZP7-160,SI20BZP7-135,SI20BZP7-20,SI20BZP7-95,SI20BZP7-140,SI20BZP7-80,SI20BZP7-100,SI20BZP7-110,SI20BZP7-125,SI20BZP7-50,SI20BZP7-45,SI20BZP7-120,SI20BZP7-5,SI20BZP7-35,SI20BZP7-90,SI20BZP7-55,SI20BZP7-75,SI20BZP7-105,SI20BZP7-40,SI20BZP7-150,SI20BZP7-165,SI20BZP7-155,SI20BZP7-65,SI20BZP7-70,SI20BZP7-171,SI20BZP7-26,SI20BZP7-181,SI20BZP7-182,SI20BZP7-105,SI20BZP7-191,SI20BZP7-197,SI20BZP7-198,SI20BZP7-199,SI20BZK7-187,SI20MAA7A15,SI20MAG7A15,SI20MAJ7A15,SI20MAL7A15,SI20MAN7H15,SI20MAV7H15,SI20MAW7H15,SI20MAX7H15,SI20MB-7H15,SI20MB-7J15,SI20MBQ7H15,SI20LBA7H15,SI20LBA7H16,SI20LBA7J15,SI20LBA7J16,SI20LBB7J15,SI20LBB7J17,SI20LBG7A17,SI20LBG7A15,SI20LAB7H15,SI20LCA7A15,SI20LCL7A15,SI20LCW7H15,SI20LDK7H16,SI20EK-7H15,SI20EK-7I15,SI20PAB7A15,SI20PAH7H15,SI20PAR7A16,SI20PCB7H15,SI20PGB7H15,SI20GHC7H15,SI20GHC7H17,SI20GHD7H15,SI20QFB7H15,SI20QU-7H15,SI20BZK7E26",89,,89,,20,,20,,58,144,"HK1003 -Blackpoint D2 - Rev.0E DD30092021"
1-1856,SI20MAW6-40,"(RFP) READY FOR PIPE CONNECTION SEAL/LEAK STEAM SYSTEM MAW",5121,"HK1003-Rev.0E-3",TT_FinMile,"55902",-,-,-,0,TK_NotStart,08/07/2022,,08/07/2022,,"SI20MAW6M10 FS,SI20MAW6-16 FS,SI20MAW6M11 FS","SI20MAW6M10,SI20MAW6-16,SI20MAW6M11","SI20MAW6H15 FS","SI20MAW6H15",100,,100,,23,,23,,73,1648,"HK1003 -Blackpoint D2 - Rev.0E DD30092021"
1-1857,SI--BAA2-85,"CONTRACT INTO FORCE IPB BAA",5121,"HK1003-Rev.0E-3",TT_Mile,"55902",-,-,-,100,TK_Complete,30/05/2021,30/05/2021,30/05/2021,30/05/2021,"SI--BAA2-80 FS,SI--BAA2-86 FS","SI--BAA2-80,SI--BAA2-86","SI20BAA3-25 FS,SI--BAA2-60 FS","SI20BAA3-25,SI--BAA2-60",43,43,43,43,10,10,10,10,15,,"HK1003 -Blackpoint D2 - Rev.0E DD30092021"
1-1858,SI--PAC2B60,"(DF) INPUT FOR MS3 CIRC. CW PUMP PAC",5121,"HK1003-Rev.0E-3",TT_FinMile,"55902",-,-,-,100,TK_Complete,06/05/2021,06/05/2021,06/05/2021,06/05/2021,"SI--PAC2B85 SS","SI--PAC2B85","SI--URD2-60 FS","SI--URD2-60",39,39,39,39,9,9,9,9,11,,"HK1003 -Blackpoint D2 - Rev.0E DD30092021"
1-1859,SI--HA-2A01,"FINAL ERECTION CONCEPT HRSG",5121,"HK1003-Rev.0E-3",TT_Mile,"55902",-,-,-,100,TK_Complete,02/05/2021,02/05/2021,02/05/2021,02/05/2021,"SI--HA-2-85 SS,SI--HA-2-81 FS","SI--HA-2-85,SI--HA-2-81","SI20HB-6A17 FS","SI20HB-6A17",39,39,39,39,9,9,9,9,10,,"HK1003 -Blackpoint D2 - Rev.0E DD30092021"
1-1860,SI--HA-2-80,"COATING INSTRUCTION",5121,"HK1003-Rev.0E-3",TT_FinMile,"55902",-,-,-,100,TK_Complete,28/11/2020,28/11/2020,28/11/2020,28/11/2020,"SI--HA-2-82 FS,SI-----1-01 SS","SI--HA-2-82,SI-----1-01","SI--HA-2-85 FS","SI--HA-2-85",17,17,17,17,3,3,3,3,0,,"HK1003 -Blackpoint D2 - Rev.0E DD30092021"
1-1861,SI20MKA6-26,"FINAL ALIGNMENT OF SLIPRING SET MKA",5121,"HK1003-Rev.0E-3",TT_Task,"55902",-,-,-,0,TK_NotStart,04/02/2023,,08/02/2023,,"SI20MKA6F05 FS,SI20MA-6A52 FS,SI20MA-6B35 FF,SI20MKA6F16 FS,SI20MKA6-32 FS,SI20MKA6F18 FS","SI20MKA6F05,SI20MA-6A52,SI20MA-6B35,SI20MKA6F16,SI20MKA6-32,SI20MKA6F18","SI20MKA6F15 FS,SI20MAV6-55 FS","SI20MKA6F15,SI20MAV6-55",131,,131,,30,,30,,89,128,"HK1003 -Blackpoint D2 - Rev.0E DD30092021"
1-1862,SI20MKA6-53,"STATOR INSULATION RESISTANCE TEST",5121,"HK1003-Rev.0E-3",TT_Mile,"55902",-,-,-,0,TK_NotStart,24/09/2022,,24/09/2022,,"SI20MKA6-34 FS","SI20MKA6-34","SI20MKA6-14 SS","SI20MKA6-14",112,,112,,26,,26,,81,688,"HK1003 -Blackpoint D2 - Rev.0E DD30092021"
1-1863,SI20MKA6-14,"(RFC) READY FOR FINAL CONNECTION GENERATOR - BUSDUCT BAA",5121,"HK1003-Rev.0E-3",TT_Mile,"55902",-,-,-,0,TK_NotStart,23/10/2022,,23/10/2022,,"SI20BZK7A27 SS,SI20MKA6-53 SS","SI20BZK7A27,SI20MKA6-53","SI20BAA7-66 FS,SI20BAA7-66 SS","SI20BAA7-66,SI20BAA7-66",116,,116,,27,,27,,84,456,"HK1003 -Blackpoint D2 - Rev.0E DD30092021"
1-1864,SI20BAA3-25,"DETAIL DESIGN / MANUFACTURING / SHOP TEST IPB 20BAA",5121,"HK1003-Rev.0E-3",TT_Task,"55902",-,-,-,33,TK_Active,30/05/2021,30/05/2021,06/06/2022,,"SI--BAA2-85 FS","SI--BAA2-85","SI20BAA3-70 FS,SI--1102-20 FS,SI20BAA3-72 SS","SI20BAA3-70,SI--1102-20,SI20BAA3-72",43,43,96,,10,10,22,,15,168,"HK1003 -Blackpoint D2 - Rev.0E DD30092021"
1-1865,SI20LBA8H25,"COLD COMMISSIONING HP MAIN STEAM SYSTEM (FOR CHEM. CLEANING) LBA10",5121,"HK1003-Rev.0E-3",TT_Task,"55902",-,-,-,0,TK_NotStart,18/04/2023,,01/05/2023,,"SI20CPC8-27 FS,SI20LBA8H10 FS,SI20BF-8-25 SS,SI--2222-37 SS,SI-PM-40 FS","SI20CPC8-27,SI20LBA8H10,SI20BF-8-25,SI--2222-37,SI-PM-40","SI20--P6-75 FS,SI--L--8A25# FF,SI--L--8A25# SS,SI20LBA8J25 SS","SI20--P6-75,SI--L--8A25#,SI--L--8A25#,SI20LBA8J25",141,,143,,33,,33,,95,56,"HK1003 -Blackpoint D2 - Rev.0E DD30092021"
1-1866,SI20PAH3-80,"(RFS) READY FOR SHIPMENT CONDENSER TUBE CLEANING SYSTEM 20PAH  (BALL STRAINER)",5121,"HK1003-Rev.0E-3",TT_FinMile,"55902",-,-,-,0,TK_NotStart,13/12/2021,,13/12/2021,,"SI20PAH4B10 FS,SI20PAH2-05 FS","SI20PAH4B10,SI20PAH2-05","SI20PAH4-25 FS","SI20PAH4-25",71,,71,,16,,16,,42,1016,"HK1003 -Blackpoint D2 - Rev.0E DD30092021"
1-1867,SI20MA-6-65,"STEAM TURBINE READY FOR PRE-ASSEMBLING MAW/MAL/MAM-PIPING K- & LP-Turbine",5121,"HK1003-Rev.0E-3",TT_Mile,"55902",-,-,-,0,TK_NotStart,02/10/2022,,02/10/2022,,"SI20MA-5-25 FS,SI20MA-5-26 FS,SI20MA-6B36 FS","SI20MA-5-25,SI20MA-5-26,SI20MA-6B36","SI20MAL6A15 FS,SI20MAW6H15 FS,SI20MAA6A15 FS,SI20MAV6H15 FS,SI20MAM6A15 FS,SI20MA-6B37 FS","SI20MAL6A15,SI20MAW6H15,SI20MAA6A15,SI20MAV6H15,SI20MAM6A15,SI20MA-6B37",113,,113,,26,,26,,82,8,"HK1003 -Blackpoint D2 - Rev.0E DD30092021"
1-1868,SI20MA-6B40,"(RFP) READY FOR PIPE CONNECTION STEAM TURBINE - MAV-PIPING (ABSAUGUNG NACH ABSPRACHE)",5121,"HK1003-Rev.0E-3",TT_FinMile,"55902",-,-,-,0,TK_NotStart,24/07/2022,,24/07/2022,,"SI20MA-5-26 FS,SI20MA-5-25 FS","SI20MA-5-26,SI20MA-5-25","SI20MAV6H15 FS","SI20MAV6H15",103,,103,,24,,24,,75,608,"HK1003 -Blackpoint D2 - Rev.0E DD30092021"
1-1869,SI20MA-6E40,"(RFP) READY FOR PIPE CONNECTION STEAM TURBINE - MAW/MAL/MAM",5121,"HK1003-Rev.0E-3",TT_FinMile,"55902",-,-,-,0,TK_NotStart,17/02/2023,,17/02/2023,,"SI20MA-6D35 FS","SI20MA-6D35","SI20MAW6H45 FS","SI20MAW6H45",132,,132,,31,,31,,91,528,"HK1003 -Blackpoint D2 - Rev.0E DD30092021"
1-1870,SI20MA-6A52,"DE-COUPLING OF LP- AND GENERATOR-SHAFTS",5121,"HK1003-Rev.0E-3",TT_Mile,"55902",-,-,-,0,TK_NotStart,04/02/2023,,04/02/2023,,"SI20MA-6D55 FS","SI20MA-6D55","SI20MA-6D57 FS,SI20MKA6-26 FS","SI20MA-6D57,SI20MKA6-26",131,,131,,30,,30,,89,8,"HK1003 -Blackpoint D2 - Rev.0E DD30092021"
1-1871,SI20MA-6D57,"HONE COUPLING HOLES AND COUPLING OF K- AND LP-SHAFTS; CHECKING OF RADIAL RUN-OUT MA",5121,"HK1003-Rev.0E-3",TT_Task,"55902",-,-,-,0,TK_NotStart,04/02/2023,,07/02/2023,,"SI20MA-6B35 FS,SI20MA-6A52 FS,SI20MA-6B38 FS","SI20MA-6B35,SI20MA-6A52,SI20MA-6B38","SI20MA-6D35# SS,SI20MKA6F08 FS,SI20MA-6D35 FS","SI20MA-6D35#,SI20MKA6F08,SI20MA-6D35",131,,131,,30,,30,,89,8,"HK1003 -Blackpoint D2 - Rev.0E DD30092021"
1-1872,SI20MA-6D55,"HONE COUPLING HOLES AND COUPLING LP- AND GENERATOR-SHAFTS; CHECKING OF RADIAL RUN-OUT MA",5121,"HK1003-Rev.0E-3",TT_Task,"55902",-,-,-,0,TK_NotStart,31/01/2023,,03/02/2023,,"SI20MA-6A30 FS,SI20MA-6A15 FS,SI20MA-6B38 FS,SI20MA-6B35 FS","SI20MA-6A30,SI20MA-6A15,SI20MA-6B38,SI20MA-6B35","SI20MA-6A52 FS","SI20MA-6A52",130,,130,,30,,30,,89,8,"HK1003 -Blackpoint D2 - Rev.0E DD30092021"
1-1873,SI20MA-6D35,"ALIGNMENT AT CASING AND TURBINE BRACKETS MA",5121,"HK1003-Rev.0E-3",TT_Task,"55902",-,-,-,0,TK_NotStart,08/02/2023,,17/02/2023,,"SI20MA-6D57 FS","SI20MA-6D57","SI20MA-6E40 FS,SI20MA-6D20 SS","SI20MA-6E40,SI20MA-6D20",131,,132,,30,,31,,90,8,"HK1003 -Blackpoint D2 - Rev.0E DD30092021"
1-1874,SI20MA-6D20,"COMPLETION OF BEARING PEDESTALS AND PREPARATION FOR FLUSHING MA",5121,"HK1003-Rev.0E-3",TT_Task,"55902",-,-,-,0,TK_NotStart,08/02/2023,,17/02/2023,,"SI20MA-6-50 FS,SI20MA-6D35 SS","SI20MA-6-50,SI20MA-6D35","SI20MA-6D50 FS,SI20MA-6D35# FF,SI20MB-7-05 FF","SI20MA-6D50,SI20MA-6D35#,SI20MB-7-05",131,,132,,30,,31,,90,8,"HK1003 -Blackpoint D2 - Rev.0E DD30092021"
1-1875,SI20LBA8H10,"(TOP-20LBA10) HP MAIN STEAM SYSTEM",5121,"HK1003-Rev.0E-3",TT_FinMile,"55902",-,-,-,0,TK_NotStart,17/04/2023,,17/04/2023,,"SI20LBB7J15 FS,SI20LBB6J47 FS,SI20LBA6J45 FS,SI20LBB6J49 FS,SI20LBG7A15 FS,SI20LBG6A45 FS,SI20LBB7J17 FS,SI20LBG6A47 FS,SI20LBB6J73 FS,SI20LBG7A17 FS,SI20LBG7C15 FS,SI20LBG6A17 FS,SI20LBA6J70 FS,SI20LBA7J15 FS,SI20LBG6A15 FS,SI20BZK7E25 FS,SI20LBA6H45 FS,SI--9998-21& SS,SI20LBA7H15 FS,SI20LBA6H70 FS,SI20LBA6H45 FF,SI20LBA7H15 FF,SI20LBA7H16 FS,SI20LBA6J72 FS,SI20LBA6J73 FS,SI20LBA7J16 FS","SI20LBB7J15,SI20LBB6J47,SI20LBA6J45,SI20LBB6J49,SI20LBG7A15,SI20LBG6A45,SI20LBB7J17,SI20LBG6A47,SI20LBB6J73,SI20LBG7A17,SI20LBG7C15,SI20LBG6A17,SI20LBA6J70,SI20LBA7J15,SI20LBG6A15,SI20BZK7E25,SI20LBA6H45,SI--9998-21&,SI20LBA7H15,SI20LBA6H70,SI20LBA6H45,SI20LBA7H15,SI20LBA7H16,SI20LBA6J72,SI20LBA6J73,SI20LBA7J16","SI20LBA8H25 FS","SI20LBA8H25",141,,141,,32,,32,,95,56,"HK1003 -Blackpoint D2 - Rev.0E DD30092021"
1-1876,SI20LBA6H70,"PT, RE-INSTALLATION PIPES / VALVES LBA10",5121,"HK1003-Rev.0E-3",TT_Task,"55902",-,-,-,0,TK_NotStart,19/02/2023,,03/03/2023,,"SI20MAX8-70 FF,SI20LBA6H15 FS","SI20MAX8-70,SI20LBA6H15","SI20LBA8J10 FS,SI20LBB8J11 FS,SI20LBG8A10 FS,SI20LBA6H45 FF,SI20LBA8H10 FS,SI20UMY6M70 FF","SI20LBA8J10,SI20LBB8J11,SI20LBG8A10,SI20LBA6H45,SI20LBA8H10,SI20UMY6M70",133,,134,,31,,31,,91,192,"HK1003 -Blackpoint D2 - Rev.0E DD30092021"
1-1877,SI20UBA5B-45,"ERECTION STEEL PLATFORMS 20UBA1110/20",5121,"HK1003-Rev.0E-3",TT_Task,"55902",-,-,-,0,TK_NotStart,28/11/2022,,11/12/2022,,"SI20UBA5B-40 FS","SI20UBA5B-40","SI20UBA5B-50 FS","SI20UBA5B-50",121,,123,,28,,28,,86,288,"HK1003 -Blackpoint D2 - Rev.0E DD30092021"
1-1878,SI20LBG3C80,"(RFS) READY FOR SHIPMENT EL.SUPERHEATER 20LBG",5121,"HK1003-Rev.0E-3",TT_FinMile,"55902",-,-,-,0,TK_NotStart,27/02/2022,,27/02/2022,,"SI20LBG3C26 FS,SI20LBG4C10 FS","SI20LBG3C26,SI20LBG4C10","SI20LBG2C05 FS,SI20LBG4C25 FS","SI20LBG2C05,SI20LBG4C25",82,,82,,19,,19,,51,616,"HK1003 -Blackpoint D2 - Rev.0E DD30092021"
1-1879,SI20UBX2-10,"(MS3) CONCRETE STRUCTURE FINAL DIMENSIONS, LOADS AVAILABLE 20UBX/20UBG03",5121,"HK1003-Rev.0E-3",TT_FinMile,"55902",-,-,-,100,TK_Complete,13/08/2021,13/08/2021,13/08/2021,13/08/2021,"SI--BAC2-60 FS,SI--M--2C20 FS","SI--BAC2-60,SI--M--2C20","SI20UBX2-15 FF,SI20UBX2-20 FS,SI20UBX2-15 FS","SI20UBX2-15,SI20UBX2-20,SI20UBX2-15",53,53,53,53,12,12,12,12,25,,"HK1003 -Blackpoint D2 - Rev.0E DD30092021"
1-1880,SI--UEN2-85,"PLANT DESIGN INPUT FOR 01UEN AVAILABLE",5121,"HK1003-Rev.0E-3",TT_FinMile,"55902",-,-,-,100,TK_Complete,21/08/2021,21/08/2021,21/08/2021,21/08/2021,"SI20UEN2-12 FF","SI20UEN2-12","SI20UEN2-90 FS,SI20UEN2D80 FS","SI20UEN2-90,SI20UEN2D80",55,55,55,55,12,12,12,12,27,,"HK1003 -Blackpoint D2 - Rev.0E DD30092021"
1-1881,SI20EK-3-81,"(RFS) READY FOR SHIPMENT FUEL GAS RECEIVING AND MIXING SYSTEM 01EK",5121,"HK1003-Rev.0E-3",TT_FinMile,"55902",-,-,-,0,TK_NotStart,18/05/2022,,18/05/2022,,"SI20EK-4B10 FS","SI20EK-4B10","SI--EK-2-07 FS,SI20EK-4-26 FS","SI--EK-2-07,SI20EK-4-26",93,,93,,21,,21,,65,600,"HK1003 -Blackpoint D2 - Rev.0E DD30092021"
1-1882,SI20EK-4-41,"(OTD-OS) ON SITE FUEL GAS RECEIVING AND MIXING SYSTEM 01EK",5121,"HK1003-Rev.0E-3",TT_FinMile,"55902",-,-,-,0,TK_NotStart,20/07/2022,,20/07/2022,,"SI20EK-4-26 FS","SI20EK-4-26","SI20EK-6-19 FS","SI20EK-6-19",102,,102,,23,,23,,74,600,"HK1003 -Blackpoint D2 - Rev.0E DD30092021"
1-1883,SI20EK-4-26,"TRANSPORT (FROM GERMANY) FUEL GAS RECEIVING AND MIXING SYSTEM 01EK",5121,"HK1003-Rev.0E-3",TT_Task,"55902",-,-,-,0,TK_NotStart,19/05/2022,,20/07/2022,,"SI20EK-3-81 FS","SI20EK-3-81","SI20EK-4-41 FS","SI20EK-4-41",93,,102,,21,,23,,65,600,"HK1003 -Blackpoint D2 - Rev.0E DD30092021"
1-1884,SI20EK-3-82,"MANUFACTURING / SHOP TEST FUEL GAS RECEIVING AND MIXING SYSTEM 01EK",5121,"HK1003-Rev.0E-3",TT_Task,"55902",-,-,-,19,TK_Active,13/08/2021,13/08/2021,20/04/2022,,"SI20EK-3-27 FS,SI--EK-2-86 FS","SI20EK-3-27,SI--EK-2-86","SI20EK-3B70 FS","SI20EK-3B70",53,53,89,,12,12,20,,25,600,"HK1003 -Blackpoint D2 - Rev.0E DD30092021"
1-1885,SI20UHA5-05,"WORK PREPARATION, EXCAVATION 20UHA",5121,"HK1003-Rev.0E-3",TT_Task,"55902",-,-,-,97,TK_Active,02/08/2021,02/08/2021,01/10/2021,,"SI--UHA2-75 FF,SI--UHA2-50 FS,SI-----5-22 FS,SI-----5-20 FS,SI--UHA2-79 FS,SI--UHA2-82 FS,SI-P222-81 FS,SI-P222-84 FS,SI20UHA5-05.1 FF","SI--UHA2-75,SI--UHA2-50,SI-----5-22,SI-----5-20,SI--UHA2-79,SI--UHA2-82,SI-P222-81,SI-P222-84,SI20UHA5-05.1","SI20ULA5-05 SS,SI20UHA5-10 FS,SI20UHX5-05 FS,SI-P222-131# FF,SI-P222-131# SS,SI20UHA5-15# SS","SI20ULA5-05,SI20UHA5-10,SI20UHX5-05,SI-P222-131#,SI-P222-131#,SI20UHA5-15#",52,52,60,,12,12,14,,24,168,"HK1003 -Blackpoint D2 - Rev.0E DD30092021"
1-1886,SI20BAC7-15,"PLACING GEN. CIRCUIT BREAKER 20BAC",5121,"HK1003-Rev.0E-3",TT_Task,"55902",-,-,-,0,TK_NotStart,29/08/2022,,29/08/2022,,"SI--BAC2-05 FS,SI20BAC4-40 FS,SI20UBX5B45 FS","SI--BAC2-05,SI20BAC4-40,SI20UBX5B45","SI20UBX5C10 FS,SI20BZK7A28 FS,SI20BAC7-16 FS,SI20BAA7-15 FS","SI20UBX5C10,SI20BZK7A28,SI20BAC7-16,SI20BAA7-15",108,,108,,25,,25,,79,352,"HK1003 -Blackpoint D2 - Rev.0E DD30092021"
1-1887,SI20UBX5-45,"(RFE) FOUNDATION 20UBX/20UBG03",5121,"HK1003-Rev.0E-3",TT_FinMile,"55902",-,-,-,0,TK_NotStart,25/05/2022,,25/05/2022,,"SI20UBX5-46 FS,SI20UBX5-15.03 FS,SI20UBX5-15 FS","SI20UBX5-46,SI20UBX5-15.03,SI20UBX5-15","SI20UBX5B10 FS","SI20UBX5B10",94,,94,,22,,22,,66,1000,"HK1003 -Blackpoint D2 - Rev.0E DD30092021"
1-1888,SI20UBA4G50,"(ET4a) I&C ELECTRICAL MODULES AT WORKSHOP READY FOR COMPONENT INSTALLATION 20UBA7110/20/30",5121,"HK1003-Rev.0E-3",TT_Mile,"55902",-,-,-,0,TK_NotStart,19/01/2022,,19/01/2022,,"SI20UBA3G25 FS","SI20UBA3G25","SI20UBA3E57 FS","SI20UBA3E57",76,,76,,17,,17,,46,688,"HK1003 -Blackpoint D2 - Rev.0E DD30092021"
1-1889,SI20UBA2B-5,"(MS3) STEEL STRUCTURE FINAL DIMENSIONS, LOADS AVAILABLE 20UBA1110/20",5121,"HK1003-Rev.0E-3",TT_FinMile,"55902",-,-,-,100,TK_Complete,23/06/2021,23/06/2021,23/06/2021,23/06/2021,"SI20UBA2G60 FS,SI20UBA2G61 FS,SI20UBA2G62 FS","SI20UBA2G60,SI20UBA2G61,SI20UBA2G62","SI20UBA2B-10 FS,SI20UBA2B-36 FS","SI20UBA2B-10,SI20UBA2B-36",46,46,46,46,10,10,10,10,18,,"HK1003 -Blackpoint D2 - Rev.0E DD30092021"
1-1890,SI20UBA2-15,"DETAIL DESIGN CONCRETE STRUCTURE 20UBA1110/20",5121,"HK1003-Rev.0E-3",TT_Task,"55902",-,-,-,89,TK_Active,08/07/2021,08/07/2021,09/10/2021,,"SI20UBA2-10 FS,SI20UBA2-5 FS,SI20UBA2-10 FF","SI20UBA2-10,SI20UBA2-5,SI20UBA2-10","SI20UBA2-20 FF,SI20UBA2-40 FS,SI20UBA2-25 FS,SI20UBA2B-10 FF","SI20UBA2-20,SI20UBA2-40,SI20UBA2-25,SI20UBA2B-10",48,48,62,,11,11,14,,21,256,"HK1003 -Blackpoint D2 - Rev.0E DD30092021"
1-1891,SI20UBA2-40,"(F) CONCRETE STRUCTURE DWGS ON SITE RELEASED FOR EXECUTION 20UBA1110/20",5121,"HK1003-Rev.0E-3",TT_FinMile,"55902",-,-,-,0,TK_NotStart,08/12/2021,,08/12/2021,,"SI20UBA2-20 FS,SI20UBA2-15 FS,SI20UBA2-30 FS","SI20UBA2-20,SI20UBA2-15,SI20UBA2-30","SI20UBA5-45 FS","SI20UBA5-45",70,,70,,16,,16,,41,256,"HK1003 -Blackpoint D2 - Rev.0E DD30092021"
1-1892,SI--PAC2B80,"QUOTATION STAGE CIRC. CW PUMP PAC",5121,"HK1003-Rev.0E-3",TT_Task,"55902",-,-,-,100,TK_Complete,30/01/2021,30/01/2021,08/04/2021,08/04/2021,"SI--PAC2B75 FS,SI-----1-05 FS,SI--PAC2B45 FS","SI--PAC2B75,SI-----1-05,SI--PAC2B45","SI--PAC2B14 FS,SI--PAC2B85 FS","SI--PAC2B14,SI--PAC2B85",26,26,35,35,6,6,8,8,3,,"HK1003 -Blackpoint D2 - Rev.0E DD30092021"
1-1893,SI20MKC4-25,"TRANSPORT TRANSFORMERS 20MKC/MBJ",5121,"HK1003-Rev.0E-3",TT_Task,"55902",-,-,-,0,TK_NotStart,30/04/2022,,24/06/2022,,"SP20MKC3-80 FS","SP20MKC3-80","SI20MBJ7-10 FS,SI20BFT4-41 FS","SI20MBJ7-10,SI20BFT4-41",91,,98,,21,,23,,60,640,"HK1003 -Blackpoint D2 - Rev.0E DD30092021"
1-1894,SI20MAY9-35,"ST PROTECTION",5121,"HK1003-Rev.0E-3",TT_Task,"55902",-,-,-,0,TK_NotStart,20/06/2023,,26/06/2023,,"SI20MA-8-25 FS,SI20MA-8-10 FS","SI20MA-8-25,SI20MA-8-10","SI20MA-8-25# FF,SI20MA-9-05 SS","SI20MA-8-25#,SI20MA-9-05",150,,151,,35,,35,,98,32,"HK1003 -Blackpoint D2 - Rev.0E DD30092021"
1-1895,SI20QFB8-25,"COLD COMMISSIONING ST CONTROL AIR SYSTEM QFB",5121,"HK1003-Rev.0E-3",TT_Task,"55902",-,-,-,0,TK_NotStart,15/06/2023,,19/06/2023,,"SI20QFB8-10 FS,SI20MA-6-66 FS,SI-PM-40 FS,SI20MA-8-25 SS,SI20TPM9A8-30 SS,SI20TPM9B8-30 SS","SI20QFB8-10,SI20MA-6-66,SI-PM-40,SI20MA-8-25,SI20TPM9A8-30,SI20TPM9B8-30","SI20MA-8-25# FF,SI20MAN8-25 SS,SI20MA-9-05 FS","SI20MA-8-25#,SI20MAN8-25,SI20MA-9-05",149,,150,,34,,35,,98,32,"HK1003 -Blackpoint D2 - Rev.0E DD30092021"
1-1896,SI20MAL8-25,"COLD COMMISSIONING ST DRAIN SYSTEM MAL",5121,"HK1003-Rev.0E-3",TT_Task,"55902",-,-,-,0,TK_NotStart,18/06/2023,,26/06/2023,,"SI20CPB8-25 FS,SI20MAL8-10 FS,SI20MA-6-66 FS,SI-PM-40 FS,SI20MA-8-25 SS","SI20CPB8-25,SI20MAL8-10,SI20MA-6-66,SI-PM-40,SI20MA-8-25","SI20HA-9A45 FS,SI20MA-8-25# FS","SI20HA-9A45,SI20MA-8-25#",150,,151,,35,,35,,98,48,"HK1003 -Blackpoint D2 - Rev.0E DD30092021"
1-1897,SI20MAX8-70,"20MAX READY FOR PRESSURE TEST LBA10/80",5121,"HK1003-Rev.0E-3",TT_FinMile,"55902",-,-,-,0,TK_NotStart,03/03/2023,,03/03/2023,,"SI20MAX6-75 FS","SI20MAX6-75","SI20LBB6J73 FF,SI20LBA6J70 FF,SI20LBA6H70 FF","SI20LBB6J73,SI20LBA6J70,SI20LBA6H70",134,,134,,31,,31,,92,136,"HK1003 -Blackpoint D2 - Rev.0E DD30092021"
1-1898,SI20LBH4D25,"TRANSPORT BLOW DOWN TANK 20LBH",5121,"HK1003-Rev.0E-3",TT_Task,"55902",-,-,-,0,TK_NotStart,10/03/2022,,08/04/2022,,"SI20LBH3D80 FS","SI20LBH3D80","SI20LBH4D40 FS","SI20LBH4D40",83,,87,,19,,20,,52,456,"HK1003 -Blackpoint D2 - Rev.0E DD30092021"
1-1899,SI20LBH3D25,"DETAIL DESIGN / MANUFACTURING BLOW DOWN TANK 20LBH",5121,"HK1003-Rev.0E-3",TT_Task,"55902",-,-,-,65,TK_Active,28/01/2021,28/01/2021,09/02/2022,,"SI20HA-3C25 SS,SI--LBH2D15 FS,SI--HA-2-85 FS","SI20HA-3C25,SI--LBH2D15,SI--HA-2-85","SI20LBH3B70 FS","SI20LBH3B70",25,25,79,,6,6,18,,3,456,"HK1003 -Blackpoint D2 - Rev.0E DD30092021"
1-1900,SP--MB-2C05,"PROCESS & INSTRUMENTATION DIAGRAMS (P&ID'S) GT&GT-AUX. (EIF)",5121,"HK1003-Rev.0E-3",TT_FinMile,"55902",-,-,-,100,TK_Complete,05/03/2021,05/03/2021,05/03/2021,05/03/2021,"SP--MB-2-10 FS","SP--MB-2-10","SP20MB-2-80 FS,SP--MB-2A80 FS,SP--MB-2A55 FS","SP20MB-2-80,SP--MB-2A80,SP--MB-2A55",30,30,30,30,7,7,7,7,6,,"HK1003 -Blackpoint D2 - Rev.0E DD30092021"
1-1901,SI20UBA2B-20,"(F) DETAIL DESIGN STEEL STRUCTURE WITH CONTRACTOR 20UBA1110/20",5121,"HK1003-Rev.0E-3",TT_FinMile,"55902",-,-,-,0,TK_NotStart,04/09/2022,,04/09/2022,,"SI20UBA2B-15 FS,SI20UBA2B-10 FS,SI20UBA2B-35 FS","SI20UBA2B-15,SI20UBA2B-10,SI20UBA2B-35","SI20UBA3B-25 FF,SI20UBA3B-25 FS","SI20UBA3B-25,SI20UBA3B-25",109,,109,,25,,25,,80,288,"HK1003 -Blackpoint D2 - Rev.0E DD30092021"
1-1902,SI20UBA2B-10,"DETAIL DESIGN STEEL STRUCTURE 20UBA1110/20",5121,"HK1003-Rev.0E-3",TT_Task,"55902",-,-,-,0,TK_NotStart,25/10/2021,,08/12/2021,,"SI20UBA2B-5 FS,SI20UBA2-15 FF,SI20UBA2B-36 FS","SI20UBA2B-5,SI20UBA2-15,SI20UBA2B-36","SI20UBA2B-20 FS,SI20UBA3B-25 FS,SI20UBA2B-30 FS,SI20UBA2B-15 FF","SI20UBA2B-20,SI20UBA3B-25,SI20UBA2B-30,SI20UBA2B-15",64,,70,,15,,16,,36,968,"HK1003 -Blackpoint D2 - Rev.0E DD30092021"
1-1903,SI--BZP2-80,"QUOTATION STAGE FOR CABLE SUPPORT SYSTEM BZP",5121,"HK1003-Rev.0E-3",TT_Task,"55902",-,-,-,89,TK_Active,11/08/2021,11/08/2021,05/10/2021,,"SI--BZP2-88 FS","SI--BZP2-88","SI--BZP2-85 FS,SI--BZP2-86 FS","SI--BZP2-85,SI--BZP2-86",53,53,61,,12,12,14,,25,144,"HK1003 -Blackpoint D2 - Rev.0E DD30092021"
1-1904,SI--BZP2-88,"RFQ CABLE SUPPORT SYSTEM BZP",5121,"HK1003-Rev.0E-3",TT_Mile,"55902",-,-,-,100,TK_Complete,11/08/2021,11/08/2021,11/08/2021,11/08/2021,"SI--BZP2-14 FS,SI--BZP2-15 FS","SI--BZP2-14,SI--BZP2-15","SI--BZP2-80 FS","SI--BZP2-80",53,53,53,53,12,12,12,12,25,,"HK1003 -Blackpoint D2 - Rev.0E DD30092021"
1-1905,SI20MAJ7A15,"ELECTRICAL ERECTION PIPES / VALVES MAJ",5121,"HK1003-Rev.0E-3",TT_Task,"55902",-,-,-,0,TK_NotStart,14/12/2022,,27/12/2022,,"SI20MAJ6A15 FS,SI20BZK7C33 FF,SI20BZP7D18 FS,SI20BZP7D19 FS,SI20BZP7-5 FS,SI20BZP7-196 FS,SI20BZP7-174 FS,SI20UMY6M10 FS,SI20UMY6M11 FS,SI20UMY6M12 FS,SI--2227-68 FS,SI--BZP2-05 FS,SI--PEE7-20 FS,SI--BZP4B40 FS,SI20MAJ6A16 FS","SI20MAJ6A15,SI20BZK7C33,SI20BZP7D18,SI20BZP7D19,SI20BZP7-5,SI20BZP7-196,SI20BZP7-174,SI20UMY6M10,SI20UMY6M11,SI20UMY6M12,SI--2227-68,SI--BZP2-05,SI--PEE7-20,SI--BZP4B40,SI20MAJ6A16","SI20MAJ8-10 FS","SI20MAJ8-10",123,,125,,28,,29,,87,864,"HK1003 -Blackpoint D2 - Rev.0E DD30092021"
1-1906,SI20SGM8-10,"(TOP-20SGM-02) FF INERTGAS SYSTEM IN 20UBA76xx/77xx/7410/73xx/7210/7110 SGM INSIDE CONTAINERS",5121,"HK1003-Rev.0E-3",TT_FinMile,"55902",-,-,-,0,TK_NotStart,13/02/2023,,13/02/2023,,"SI20SGM6-15 FS","SI20SGM6-15","SI20SGM8-25 FS","SI20SGM8-25",132,,132,,30,,30,,90,408,"HK1003 -Blackpoint D2 - Rev.0E DD30092021"
1-1907,SI20HAD8F10,"(TOP-20HAD50) HRSG IP SYSTEM",5121,"HK1003-Rev.0E-3",TT_FinMile,"55902",-,-,-,0,TK_NotStart,28/04/2023,,28/04/2023,,"SI20LCL6A15 FS,SI20LCL6A45 FS,SI20HA-4B40 FS,SI20LCL7A15 FS,SI20HA-6A48 FS,SI20HB-6-14 FS,SI20HA-6-56 FS,SI--9998-21& SS,SI20BZK7-180 FS","SI20LCL6A15,SI20LCL6A45,SI20HA-4B40,SI20LCL7A15,SI20HA-6A48,SI20HB-6-14,SI20HA-6-56,SI--9998-21&,SI20BZK7-180","SI20HAD8F25 FS","SI20HAD8F25",142,,142,,33,,33,,96,0,"HK1003 -Blackpoint D2 - Rev.0E DD30092021"
1-1908,SI20HAD8E10,"(TOP-20HAD10) HRSG HP SYSTEM",5121,"HK1003-Rev.0E-3",TT_FinMile,"55902",-,-,-,0,TK_NotStart,28/04/2023,,28/04/2023,,"SI20LCL6A15 FS,SI20LCL6A45 FS,SI20HA-4B40 FS,SI20LCL7A15 FS,SI20HA-6A48 FS,SI20HB-6-14 FS,SI--9998-21& SS,SI20LBF6H47 FS,SI20HA-6-56 FS,SI20BZK7-180 FS","SI20LCL6A15,SI20LCL6A45,SI20HA-4B40,SI20LCL7A15,SI20HA-6A48,SI20HB-6-14,SI--9998-21&,SI20LBF6H47,SI20HA-6-56,SI20BZK7-180","SI20HAD8E25 FS","SI20HAD8E25",142,,142,,33,,33,,96,0,"HK1003 -Blackpoint D2 - Rev.0E DD30092021"
1-1909,SI20HA-6-40,"(RFP) READY FOR PIPE CONNECTION TERMINAL POINTS",5121,"HK1003-Rev.0E-3",TT_FinMile,"55902",-,-,-,0,TK_NotStart,03/08/2022,,03/08/2022,,"SI20HB-6-13 FS,SI20HB-6-14 FS","SI20HB-6-13,SI20HB-6-14","SI20LBB6J15 FF,SI20LBF6H47 FS,SI20LBG6A15 FF,SI20LAB6H15 FS,SI11LBA6H71 FS,SI20LBA6J71 FS,SI20HB-6-20 FS","SI20LBB6J15,SI20LBF6H47,SI20LBG6A15,SI20LAB6H15,SI11LBA6H71,SI20LBA6J71,SI20HB-6-20",104,,104,,24,,24,,76,0,"HK1003 -Blackpoint D2 - Rev.0E DD30092021"
1-1910,SI20LCB4B40,"(OTD-OS) ON SITE CONDENSATE EXTRACTION PUMP 20LCB",5121,"HK1003-Rev.0E-3",TT_FinMile,"55902",-,-,-,0,TK_NotStart,27/07/2022,,27/07/2022,,"SI20LCB4B25 FS","SI20LCB4B25","SI20LCB6B10 FS","SI20LCB6B10",103,,103,,24,,24,,75,344,"HK1003 -Blackpoint D2 - Rev.0E DD30092021"
1-1911,SI20LCB4B25,"TRANSPORT CONDENSATE EXTRACTION PUMP 20LCB",5121,"HK1003-Rev.0E-3",TT_Task,"55902",-,-,-,0,TK_NotStart,02/06/2022,,27/07/2022,,"SI20LCB3B80 SS","SI20LCB3B80","SI20LCB4B40 FS","SI20LCB4B40",95,,103,,22,,24,,68,344,"HK1003 -Blackpoint D2 - Rev.0E DD30092021"
1-1912,SI---2S6-05&,"START WORK ON PIPING ACTIVITIES",5121,"HK1003-Rev.0E-3",TT_Mile,"55902",-,-,-,0,TK_NotStart,07/04/2022,,07/04/2022,,"SI-----1-05 FS","SI-----1-05","SI---5P6A09 FS,SI---1P6A05 FS,SI---1P6A6 FS","SI---5P6A09,SI---1P6A05,SI---1P6A6",87,,87,,20,,20,,56,696,"HK1003 -Blackpoint D2 - Rev.0E DD30092021"
1-1913,SI---3S6-05&,"START WORK IN TURBINE PACKAGES",5121,"HK1003-Rev.0E-3",TT_Mile,"55902",-,-,-,0,TK_NotStart,16/07/2022,,16/07/2022,,"SI-----1-05 FS","SI-----1-05","SI20MB-6-00 FS","SI20MB-6-00",102,,102,,23,,23,,73,184,"HK1003 -Blackpoint D2 - Rev.0E DD30092021"
1-1914,SI20SA-6-20&,"START WORK FOR HVAC ACTIVITIES",5121,"HK1003-Rev.0E-3",TT_Mile,"55902",-,-,-,0,TK_NotStart,14/10/2022,,14/10/2022,,"SI-----1-05 FS","SI-----1-05","SI20SAM6E15 FS","SI20SAM6E15",114,,114,,26,,26,,83,1072,"HK1003 -Blackpoint D2 - Rev.0E DD30092021"
1-1915,SI--B--2-81,"PROJECT SPECIFIC ADAPTION OF ELECTRICAL REQUIREMENTS FOR HRSG",5121,"HK1003-Rev.0E-3",TT_Task,"55902",-,-,-,100,TK_Complete,13/08/2020,13/08/2020,07/10/2020,07/10/2020,"SI--3331-31 SS,SI--HA-2-81 FF","SI--3331-31,SI--HA-2-81","SI--B--2-04 FS,SI--HA-2-14 FS","SI--B--2-04,SI--HA-2-14",1,1,9,9,0,0,2,2,0,,"HK1003 -Blackpoint D2 - Rev.0E DD30092021"
1-1916,SI20MA-4-25,"TRANSPORT STEAM TURBINE (HI-L)",5121,"HK1003-Rev.0E-3",TT_Task,"55902",-,-,-,0,TK_NotStart,07/05/2022,,30/07/2022,,"SI--LOG4-30 FS,SP20MA-3-80 FS,SP20MKA3-81 FS","SI--LOG4-30,SP20MA-3-80,SP20MKA3-81","SI20MA-4-40 FS","SI20MA-4-40",92,,104,,21,,24,,63,96,"HK1003 -Blackpoint D2 - Rev.0E DD30092021"
1-1917,SI20LAC8B25,"COLD COMMISSIONING FEEDWATER SYSTEM 20LAB/C",5121,"HK1003-Rev.0E-3",TT_Task,"55902",-,-,-,0,TK_NotStart,15/04/2023,,28/04/2023,,"SI20LBB6J17 FS,SI20LBA6H15 FS,SI20BFG8-50 FS,SI20LBA6J15 FS,SI20LCA6A15 FS,SI--2222-37 SS,SI20LAC6B15 FS,SI20LAC8B10 FS,SI20CPC8-27 FS,SI20LBA6J71 FS,SI20LAB6H15 FS,SI-PM-40 FS,SI20B--8-50 FS,SI20TPM4A8-30 FS,SI20BBA8-37 SS,SI20BBA8-35 SS,SI20UMY6M70 FS","SI20LBB6J17,SI20LBA6H15,SI20BFG8-50,SI20LBA6J15,SI20LCA6A15,SI--2222-37,SI20LAC6B15,SI20LAC8B10,SI20CPC8-27,SI20LBA6J71,SI20LAB6H15,SI-PM-40,SI20B--8-50,SI20TPM4A8-30,SI20BBA8-37,SI20BBA8-35,SI20UMY6M70","SI--L--8A25# SS,SI20--P6-75 FS,SI--L--8A25# FF,SI20LAC8B26 FS","SI--L--8A25#,SI20--P6-75,SI--L--8A25#,SI20LAC8B26",141,,142,,32,,33,,95,112,"HK1003 -Blackpoint D2 - Rev.0E DD30092021"
1-1918,SI--UBA2A75,"(F) CONCRETE STRUCTURE DWGS ON SITE RELEASED FOR EXECUTION UBA7910/7920",5121,"HK1003-Rev.0E-3",TT_FinMile,"55902",-,-,-,0,TK_NotStart,08/04/2022,,08/04/2022,,"SI--UBA2-50 FS,SI--UBA2-70 FS,SI--UBA2-97 FS","SI--UBA2-50,SI--UBA2-70,SI--UBA2-97","SI20UBA5-05 FS","SI20UBA5-05",87,,87,,20,,20,,57,968,"HK1003 -Blackpoint D2 - Rev.0E DD30092021"
1-1919,SI20PAA2-80,"QUOTATION STAGE COOLING TOWER COARSE SCREEN 20PAA (MPA)",5121,"HK1003-Rev.0E-3",TT_Task,"55902",-,-,-,100,TK_Complete,04/08/2021,04/08/2021,28/09/2021,28/09/2021,"SI20PAA2-77 FS","SI20PAA2-77","SI20PAA2-85 FS","SI20PAA2-85",52,52,60,60,12,12,14,14,24,,"HK1003 -Blackpoint D2 - Rev.0E DD30092021"
1-1920,SI20PAA2-77,"PREPARATION RFQ COOLING TOWER COARSE SCREEN 20PAA (MPA)",5121,"HK1003-Rev.0E-3",TT_Task,"55902",-,-,-,100,TK_Complete,14/07/2021,14/07/2021,03/08/2021,03/08/2021,"SI--3331-32 SS,SI-----1-03 SS,SI-----1-05 FS","SI--3331-32,SI-----1-03,SI-----1-05","SI20PAA2-80 FS","SI20PAA2-80",49,49,52,52,11,11,12,12,21,,"HK1003 -Blackpoint D2 - Rev.0E DD30092021"
1-1921,SI20QJ-3B80,"(RFS) READY FOR SHIPMENT CENTRAL GAS SUPPLY (H2,CO2) QJ_",5121,"HK1003-Rev.0E-3",TT_FinMile,"55902",-,-,-,0,TK_NotStart,06/11/2021,,06/11/2021,,"SI20QJ-4B10 FS","SI20QJ-4B10","SI20QJ-4B25 FS","SI20QJ-4B25",66,,66,,15,,15,,37,3320,"HK1003 -Blackpoint D2 - Rev.0E DD30092021"
1-1922,SI20QJ-4B25,"TRANSPORT CENTRAL GAS SUPPLY (H2,CO2) QJ_",5121,"HK1003-Rev.0E-3",TT_Task,"55902",-,-,-,0,TK_NotStart,16/07/2022,,09/09/2022,,"SI20QJ-3B80 FS","SI20QJ-3B80","SI20QJ-4B40 FS","SI20QJ-4B40",102,,109,,23,,25,,74,1312,"HK1003 -Blackpoint D2 - Rev.0E DD30092021"
1-1923,SI20QJ-3B25,"DETAIL DESIGN, MANUFACTURING, SHOP TEST CENTRAL GAS SUPPLY (H2,CO2) QJ_",5121,"HK1003-Rev.0E-3",TT_Task,"55902",-,-,-,93,TK_Active,23/05/2021,23/05/2021,09/10/2021,,"SI20QJ-2-85 FS","SI20QJ-2-85","SI20QJ-3B70 FS","SI20QJ-3B70",42,42,62,,9,9,14,,13,3320,"HK1003 -Blackpoint D2 - Rev.0E DD30092021"
1-1924,SI20MAG6-11,"INSTALLING PROTECTIVE COVER FOR COOLING TUBES IN THE STEAM SHELL (UPPER) MAG20",5121,"HK1003-Rev.0E-3",TT_Task,"55902",-,-,-,0,TK_NotStart,09/06/2022,,11/06/2022,,"SI20MAG6-10 FS,SI20MAG6-16 SS","SI20MAG6-10,SI20MAG6-16","SI20MAG6-26 FS","SI20MAG6-26",96,,97,,22,,22,,69,224,"HK1003 -Blackpoint D2 - Rev.0E DD30092021"
1-1925,SI20UBA4J25,"TRANSPORT ELECTRICAL MODULES 20UBA7610/20  (TO SITE)",5121,"HK1003-Rev.0E-3",TT_Task,"55902",-,-,-,0,TK_NotStart,02/05/2022,,26/06/2022,,"SI20UBA3J80 FS","SI20UBA3J80","SI20UBA4B48 FS","SI20UBA4B48",91,,99,,21,,23,,61,768,"HK1003 -Blackpoint D2 - Rev.0E DD30092021"
1-1926,SI20LCB3B28,"MANUFACTURING / SHOP TEST CONDENSATE EXTRACTION PUMP 20LCB",5121,"HK1003-Rev.0E-3",TT_Task,"55902",-,-,-,45,TK_Active,09/04/2021,09/04/2021,04/05/2022,,"SI--LCB2B85 FS","SI--LCB2B85","SI20LCB3B70 FS,SI20LCB3B80 FS,SI20LCB2B05 FS","SI20LCB3B70,SI20LCB3B80,SI20LCB2B05",35,35,91,,8,8,21,,8,344,"HK1003 -Blackpoint D2 - Rev.0E DD30092021"
1-1927,SI--UBF2-60,"(MS3) CONCRETE STRUCTURE FINAL DIMENSIONS, LOADS AVAILABLE 20UBE/UBF",5121,"HK1003-Rev.0E-3",TT_FinMile,"55902",-,-,-,100,TK_Complete,05/06/2021,05/06/2021,05/06/2021,05/06/2021,"SI20BAT2-60 FS","SI20BAT2-60","SI--UBF2-77 FS,SI--UBF2-70 FS,SI--UBF2B60 FS","SI--UBF2-77,SI--UBF2-70,SI--UBF2B60",44,44,44,44,10,10,10,10,16,,"HK1003 -Blackpoint D2 - Rev.0E DD30092021"
1-1928,SI--UBF2-70,"DETAIL DESIGN CONCRETE STRUCTURE 20UBE/UBF",5121,"HK1003-Rev.0E-3",TT_Task,"55902",-,-,-,100,TK_Complete,22/06/2021,22/06/2021,09/08/2021,09/08/2021,"SI--UBF2-79 FS,SI--UBF2-78 FS,SI--UBF2-77 FS,SI--UBF2-60 FS,SI20BAT2-15 FS,SI20ACA2-20 FS,SI--UB-2-36 FS,SI20ACA2-35 FF","SI--UBF2-79,SI--UBF2-78,SI--UBF2-77,SI--UBF2-60,SI20BAT2-15,SI20ACA2-20,SI--UB-2-36,SI20ACA2-35","SI--UBF2-50 FF,SI--UBF2A75 FS,SI--UBF2-71 FS,SI--UBF2B70 FF,SI--BZP2-93 FS","SI--UBF2-50,SI--UBF2A75,SI--UBF2-71,SI--UBF2B70,SI--BZP2-93",46,46,53,53,10,10,12,12,18,,"HK1003 -Blackpoint D2 - Rev.0E DD30092021"
1-1929,SI--UBF2A75,"(F) CONCRETE STRUCTURE DWGS ON SITE RELEASED FOR EXECUTION 20UBE/UBF",5121,"HK1003-Rev.0E-3",TT_FinMile,"55902",-,-,-,0,TK_NotStart,13/10/2021,,13/10/2021,,"SI--UBF2-71 FS,SI--UBF2-70 FS,SI--UBF2-50 FS,SI--UBF2-80 FS,SI--UBF2-82 FS","SI--UBF2-71,SI--UBF2-70,SI--UBF2-50,SI--UBF2-80,SI--UBF2-82","SI20UBF5-10 FS,SI20UBF5-05.00 FS","SI20UBF5-10,SI20UBF5-05.00",62,,62,,14,,14,,34,144,"HK1003 -Blackpoint D2 - Rev.0E DD30092021"
1-1930,SI20LCL6A15,"ERECTION, NDT, PT PIPES / VALVES 20LCL",5121,"HK1003-Rev.0E-3",TT_Task,"55902",-,-,-,0,TK_NotStart,20/10/2022,,01/02/2023,,"SI20LCL6B40 FS,SI20UHW6A-15 FS,SI---1P6A05 FS","SI20LCL6B40,SI20UHW6A-15,SI---1P6A05","SI20HAA8E17 FS,SI20LCL8B10 FS,SI20HAD8G10 FS,SI20HAD8E10 FS,SI20LBH8D10 FS,SI20HAD8F10 FS,SI20LCL6A45 FS,SI20-6-16# FF,SI20-6-16# SS,SI20TPM22A6-20 SS","SI20HAA8E17,SI20LCL8B10,SI20HAD8G10,SI20HAD8E10,SI20LBH8D10,SI20HAD8F10,SI20LCL6A45,SI20-6-16#,SI20-6-16#,SI20TPM22A6-20",115,,130,,27,,30,,83,400,"HK1003 -Blackpoint D2 - Rev.0E DD30092021"
1-1931,SI20LCL6A45,"INSULATION PIPES / VALVES STEAM GENERATOR DRAINS 20LCL",5121,"HK1003-Rev.0E-3",TT_Task,"55902",-,-,-,0,TK_NotStart,02/02/2023,,01/03/2023,,"SI20LCL6A15 FS,SI-P2I-15 FS","SI20LCL6A15,SI-P2I-15","SI20HAA8E17 FS,SI20HAD8G10 FS,SI20HAD8E10 FS,SI20LBH8D10 FS,SI20HAD8F10 FS,SI20LCL7A15 FF,SI20LCL8B10 FS,SI20---6A15# FF","SI20HAA8E17,SI20HAD8G10,SI20HAD8E10,SI20LBH8D10,SI20HAD8F10,SI20LCL7A15,SI20LCL8B10,SI20---6A15#",130,,134,,30,,31,,89,400,"HK1003 -Blackpoint D2 - Rev.0E DD30092021"
1-1932,SI20---6A15,"ERECTION, NDT, PT / VALVES INTERCON. PIPING 20EK/MB/AUX. SYSTEM",5121,"HK1003-Rev.0E-3",TT_Task,"55902",-,-,-,0,TK_NotStart,10/10/2022,,25/12/2022,,"SP20MB-4A40 FS,SI20MB-6-20 SS,SI20MBA6-40 FS","SP20MB-4A40,SI20MB-6-20,SI20MBA6-40","SI20MBV6-55 FS,SI20-6-16# FF,SI20-6-16# SS","SI20MBV6-55,SI20-6-16#,SI20-6-16#",114,,125,,26,,29,,83,488,"HK1003 -Blackpoint D2 - Rev.0E DD30092021"
1-1933,SI20BZL8B12,"(TOP-20BZL-03) LIGHTING / SMALL POWER IN UBA/UBF/UBE",5121,"HK1003-Rev.0E-3",TT_FinMile,"55902",-,-,-,0,TK_NotStart,10/04/2023,,10/04/2023,,"SI--9998-20& SS,SI20BZL7-38 FS,SI20BZL7A15 FS","SI--9998-20&,SI20BZL7-38,SI20BZL7A15","SI20BZL8A27 FS","SI20BZL8A27",140,,140,,32,,32,,94,1320,"HK1003 -Blackpoint D2 - Rev.0E DD30092021"
1-1934,SI20MAG8-10,"(TOP-20MAG) CONDENSATION SYSTEM",5121,"HK1003-Rev.0E-3",TT_FinMile,"55902",-,-,-,0,TK_NotStart,10/04/2023,,10/04/2023,,"SI20MA-6D70 FS,SI20MAA6A15 FS,SI20MA-6D45 FS,SI20MAG7A15 FS,SI20MAG6A45 FS,SI20MAG6-59 FS,SI20MAG6A15 FS,SI20MAG6-60 FS,SI20BZK7C33 FS,SI20MAD8-26& FS,SI20MAG7A16 FS","SI20MA-6D70,SI20MAA6A15,SI20MA-6D45,SI20MAG7A15,SI20MAG6A45,SI20MAG6-59,SI20MAG6A15,SI20MAG6-60,SI20BZK7C33,SI20MAD8-26&,SI20MAG7A16","SI20MA-8-10 FS,SI20MA-8-25 FS","SI20MA-8-10,SI20MA-8-25",140,,140,,32,,32,,94,32,"HK1003 -Blackpoint D2 - Rev.0E DD30092021"
1-1935,SI20CY-7-15,"ERECTION COMMUNICATION SYSTEMs IN 20UMC",5121,"HK1003-Rev.0E-3",TT_Task,"55902",-,-,-,0,TK_NotStart,04/12/2022,,21/01/2023,,"SI20BZL7F17 FS,SI20UMC5C55 FS,SI--CYA4-40 FS,SI20BZL7F15 FS,SI20UMC5D40 FS","SI20BZL7F17,SI20UMC5C55,SI--CYA4-40,SI20BZL7F15,SI20UMC5D40","SI20CY-7-10# SS,SI20CY-7-10# FF,SI--CYA8-10 FS,SI--CYA7A15 FS,SI20CYA8A10 FS,SI20TPI10A7-25 FS,SI20TPI6A7-25 FS,SI20TPI21A7-25 FS,SI20MKA6F18 FF","SI20CY-7-10#,SI20CY-7-10#,SI--CYA8-10,SI--CYA7A15,SI20CYA8A10,SI20TPI10A7-25,SI20TPI6A7-25,SI20TPI21A7-25,SI20MKA6F18",122,,129,,28,,30,,86,136,"HK1003 -Blackpoint D2 - Rev.0E DD30092021"
1-1936,SI20HB-8-18,"INLET DUCT GAS SYSTEM READY HRSG20",5121,"HK1003-Rev.0E-3",TT_FinMile,"55902",-,-,-,0,TK_NotStart,09/07/2022,,09/07/2022,,"SI20HB-6E33 FS,SI20HB-6E27 FS,SI20HB-4E40 FS,SI20HA-6D18 FS,SI20HB-6E27 FF","SI20HB-6E33,SI20HB-6E27,SI20HB-4E40,SI20HA-6D18,SI20HB-6E27","SI20HB-8-12 FS,SI20HB-8-25 FS","SI20HB-8-12,SI20HB-8-25",101,,101,,23,,23,,73,2400,"HK1003 -Blackpoint D2 - Rev.0E DD30092021"
1-1937,SI20QU-7H15,"ELECTRICAL ERECTION / VALVES DOSING SYSTEM 20QU",5121,"HK1003-Rev.0E-3",TT_Task,"55902",-,-,-,0,TK_NotStart,25/03/2023,,31/03/2023,,"SI20QU-6H15 FS,SI20BZP7D18 FS,SI20BZP7D19 FS,SI20BZP7-5 FS,SI20BZP7-196 FS,SI20BZP7-174 FS,SI20UMY6M10 FS,SI20UMY6M11 FS,SI20UMY6M12 FS,SI--2227-68 FS,SI--BZP2-05 FS,SI--PEE7-20 FS,SI--BZP4B40 FS","SI20QU-6H15,SI20BZP7D18,SI20BZP7D19,SI20BZP7-5,SI20BZP7-196,SI20BZP7-174,SI20UMY6M10,SI20UMY6M11,SI20UMY6M12,SI--2227-68,SI--BZP2-05,SI--PEE7-20,SI--BZP4B40","SI20QU-8-10 FS,SI20BZK7D11# FF,SI20BZK7D11# SS","SI20QU-8-10,SI20BZK7D11#,SI20BZK7D11#",138,,138,,32,,32,,93,408,"HK1003 -Blackpoint D2 - Rev.0E DD30092021"
1-1938,SI20MBA8A10,"(TOP-20MBA4) GT BLOW OFF SYSTEM",5121,"HK1003-Rev.0E-3",TT_FinMile,"55902",-,-,-,0,TK_NotStart,27/04/2023,,27/04/2023,,"SP20MB-4A40 FS,SI20MBA6F15 FS,SI20MBA6-40 FS,SI20MBQ7H15 FS,SI20MB-7J15 FS,SI20MB-4A25 FS,SI20MBV6-55 FS,SI20MB-7H15 FS,SI20BZK7L25 FS,SI20MBA6A15 FS,SI20BZK7F26 FS,SI20MB-6A15 FS,SI20BZK7F26 FF,SI20MBA8-23& FS","SP20MB-4A40,SI20MBA6F15,SI20MBA6-40,SI20MBQ7H15,SI20MB-7J15,SI20MB-4A25,SI20MBV6-55,SI20MB-7H15,SI20BZK7L25,SI20MBA6A15,SI20BZK7F26,SI20MB-6A15,SI20BZK7F26,SI20MBA8-23&","SI20MBA8-10 FS,SI20MBA8E25 FS","SI20MBA8-10,SI20MBA8E25",142,,142,,33,,33,,96,8,"HK1003 -Blackpoint D2 - Rev.0E DD30092021"
1-1939,SI20MBX8E10,"(TOP-20MBX) GT HYDRAULIC OIL SYSTEM",5121,"HK1003-Rev.0E-3",TT_FinMile,"55902",-,-,-,0,TK_NotStart,27/04/2023,,27/04/2023,,"SP20MB-4A40 FS,SI20MBA6F15 FS,SI20MBA6A15 FS,SI20MBA6-40 FS,SI20MBQ7H15 FS,SI20MB-7J15 FS,SI20MB-4A25 FS,SI20MBV6-55 FS,SI20MB-7H15 FS,SI20BZK7L25 FS,SI20BZK7F26 FS,SI20MB-6A15 FS,SI20BZK7F26 FF,SI20MBA8-23& FS","SP20MB-4A40,SI20MBA6F15,SI20MBA6A15,SI20MBA6-40,SI20MBQ7H15,SI20MB-7J15,SI20MB-4A25,SI20MBV6-55,SI20MB-7H15,SI20BZK7L25,SI20BZK7F26,SI20MB-6A15,SI20BZK7F26,SI20MBA8-23&","SI20MBX8E25 FS,SI20MBA8-10 FS","SI20MBX8E25,SI20MBA8-10",142,,142,,33,,33,,96,8,"HK1003 -Blackpoint D2 - Rev.0E DD30092021"
1-1940,SI20MBX8-10,"(TOP-20MBX2) GT PNEUMATIC SYSTEM MBX21",5121,"HK1003-Rev.0E-3",TT_FinMile,"55902",-,-,-,0,TK_NotStart,27/04/2023,,27/04/2023,,"SP20MB-4A40 FS,SI20MBA6F15 FS,SI20MBA6A15 FS,SI20MBA6-40 FS,SI20MBQ7H15 FS,SI20MB-7J15 FS,SI20MB-4A25 FS,SI20MBV6-55 FS,SI20MB-7H15 FS,SI20MB-6A15 FS,SI20BZK7F26 FS,SI20BZK7L25 FS,SI20BZK7F26 FF,SI20MBA8-23& FS","SP20MB-4A40,SI20MBA6F15,SI20MBA6A15,SI20MBA6-40,SI20MBQ7H15,SI20MB-7J15,SI20MB-4A25,SI20MBV6-55,SI20MB-7H15,SI20MB-6A15,SI20BZK7F26,SI20BZK7L25,SI20BZK7F26,SI20MBA8-23&","SI20MBA8-10 FS,SI20MBX8-25 FS","SI20MBA8-10,SI20MBX8-25",142,,142,,33,,33,,96,8,"HK1003 -Blackpoint D2 - Rev.0E DD30092021"
1-1941,SI20MAX8-10,"(TOP-20MAX) ST HYDRAULIC SYSTEM",5121,"HK1003-Rev.0E-3",TT_FinMile,"55902",-,-,-,0,TK_NotStart,10/04/2023,,10/04/2023,,"SI20MA-6D70 FS,SI20MAA6A15 FS,SI20MA-6D45 FS,SI20BZK7C33 FS,SI20MAX6-75 FS,SI20MAX6H15 FS,SI20BZK7-28 FS,SI20MAX7-15 FS,SI20MAX7H15 FS,SI20MAD8-26& FS","SI20MA-6D70,SI20MAA6A15,SI20MA-6D45,SI20BZK7C33,SI20MAX6-75,SI20MAX6H15,SI20BZK7-28,SI20MAX7-15,SI20MAX7H15,SI20MAD8-26&","SI20MAX8-25 FS,SI20MA-8-10 FS,SI20MA-8-25 FS","SI20MAX8-25,SI20MA-8-10,SI20MA-8-25",140,,140,,32,,32,,94,32,"HK1003 -Blackpoint D2 - Rev.0E DD30092021"
1-1942,SI--SG-2-85,"CONTRACT INTO FORCE FIRE FIGHTING SYSTEMS SG-",5121,"HK1003-Rev.0E-3",TT_Mile,"55902",-,-,-,100,TK_Complete,10/09/2021,10/09/2021,10/09/2021,10/09/2021,"SI--SG-2-18 FS,SI--SG-2-80 FS,SI--SG-2-50 FS,SI--SG-2-15 FS,SI--SG-2-50 SS,SI--SG-2-95 FS,SI--SG-2-107 FS","SI--SG-2-18,SI--SG-2-80,SI--SG-2-50,SI--SG-2-15,SI--SG-2-50,SI--SG-2-95,SI--SG-2-107","SI20SGA3-25 FS,SI--SGA3A25 FS,SI--SGA2-31 FS,SI20SGA3-26 FS,SI--SG-2-46 FS,SI20SG-3-25 FS,SI20SGY3A25 FS","SI20SGA3-25,SI--SGA3A25,SI--SGA2-31,SI20SGA3-26,SI--SG-2-46,SI20SG-3-25,SI20SGY3A25",57,57,57,57,13,13,13,13,29,,"HK1003 -Blackpoint D2 - Rev.0E DD30092021"
1-1943,SI--SG-2-42,"(DF) P&ID'S FOR FIRE FIGHTING SYSTEMS AVAILABLE SG-",5121,"HK1003-Rev.0E-3",TT_FinMile,"55902",-,-,-,100,TK_Complete,18/06/2021,18/06/2021,18/06/2021,18/06/2021,"SI--SG-2-15 FS,SP--SGJ2-03 FS","SI--SG-2-15,SP--SGJ2-03","SI--SG-2-80 FS","SI--SG-2-80",45,45,45,45,10,10,10,10,18,,"HK1003 -Blackpoint D2 - Rev.0E DD30092021"
1-1944,SI20GKB8A10,"(TOP-20GKB) DRINKING WATER DISTRIBUTION SYSTEM",5121,"HK1003-Rev.0E-3",TT_FinMile,"55902",-,-,-,0,TK_NotStart,28/04/2023,,28/04/2023,,"SI20GKB6H15 FS,SI20GKB6H16 FS","SI20GKB6H15,SI20GKB6H16","SI20GKB8H25 FS,SI20TPM5A8-30 FS,SI20TPM5B8-30 FS","SI20GKB8H25,SI20TPM5A8-30,SI20TPM5B8-30",142,,142,,33,,33,,96,456,"HK1003 -Blackpoint D2 - Rev.0E DD30092021"
1-1945,SI--G--2-20,"WATER BALANCE DIAGRAM AVAILABLE",5121,"HK1003-Rev.0E-3",TT_Mile,"55902",-,-,-,100,TK_Complete,17/10/2020,17/10/2020,17/10/2020,17/10/2020,"SI--HA-2-75 SS,SI--3332-02 SS","SI--HA-2-75,SI--3332-02","SI----P2J85 FS,SI--G--2-83 FS,SI--G--2A05 FS,SI20PGB2D86 FS,SI--GM-2B75 FS,SI--GM-2B86 FS,SI20PGB2B86 FS,SI20PCB2B64 FS,SI20LDK2B86 FS,SI20LCL2B86 FS,SI20LCL2B75 FS,SI--PAC2B86 FS,SI--PAC2B75 FS,SI--LDK2B05 FS,SI--G--2-35 FS,SI20UGU2-52 FS,SI--PAD2-75 FS","SI----P2J85,SI--G--2-83,SI--G--2A05,SI20PGB2D86,SI--GM-2B75,SI--GM-2B86,SI20PGB2B86,SI20PCB2B64,SI20LDK2B86,SI20LCL2B86,SI20LCL2B75,SI--PAC2B86,SI--PAC2B75,SI--LDK2B05,SI--G--2-35,SI20UGU2-52,SI--PAD2-75",11,11,11,11,2,2,2,2,0,,"HK1003 -Blackpoint D2 - Rev.0E DD30092021"
1-1946,SP--MB-2-85,"CONTRACT INTO FORCE GAS TURBINE INCL. GT ENGINEERING",5121,"HK1003-Rev.0E-3",TT_Mile,"55902",-,-,-,100,TK_Complete,15/01/2021,15/01/2021,15/01/2021,15/01/2021,"SI-----1-04 FS,SI-----1-05 FS","SI-----1-04,SI-----1-05","SP--MB-2-40 FS,SP--MB-2-50 FS,SP--MB-2D40 FS,SP--MB-2-86 FS,SP--MB-2B40 FS,SI20UMC2B-5 FS,SP--MB-2-87 FS,SP--MB-2-10 FS,SI--UMC2Y60 FS,SI--UMC2A60 FS,SP20MBL2-100& FS,SI--UMC2B45 FS","SP--MB-2-40,SP--MB-2-50,SP--MB-2D40,SP--MB-2-86,SP--MB-2B40,SI20UMC2B-5,SP--MB-2-87,SP--MB-2-10,SI--UMC2Y60,SI--UMC2A60,SP20MBL2-100&,SI--UMC2B45",23,23,23,23,5,5,5,5,2,,"HK1003 -Blackpoint D2 - Rev.0E DD30092021"
1-1947,SP--MB-2-86,"ORDER ACCEPTANCE MEETING GT&GT-AUX (AEG) / R2 REVIEW",5121,"HK1003-Rev.0E-3",TT_Mile,"55902",-,-,-,100,TK_Complete,06/02/2021,06/02/2021,06/02/2021,06/02/2021,"SI-----1-04 SS,SP--MB-2-85 FS","SI-----1-04,SP--MB-2-85","SP20MBX2A80 FS,SP--CJJ2-38 SS,SP20MBP2A80 FS,SP--MB-2-12 FS,SP20MB-3C25 FS,SP20CJP3A25 FS,SP--MB-2-07 FS,SP--MB-2A80 FS,SP--CJP2-17 FS,SP--CJP2-38 SS,SP20MKW2-10 FS,SP20MB-3D25 FS","SP20MBX2A80,SP--CJJ2-38,SP20MBP2A80,SP--MB-2-12,SP20MB-3C25,SP20CJP3A25,SP--MB-2-07,SP--MB-2A80,SP--CJP2-17,SP--CJP2-38,SP20MKW2-10,SP20MB-3D25",27,27,27,27,6,6,6,6,4,,"HK1003 -Blackpoint D2 - Rev.0E DD30092021"
1-1948,SP--MB-2-10,"TECHNICAL REQUIREMENTS FOR GT SYSTEMS (EID FINAL / INTERFACE CLARIFICATION)",5121,"HK1003-Rev.0E-3",TT_Mile,"55902",-,-,-,100,TK_Complete,05/03/2021,05/03/2021,05/03/2021,05/03/2021,"SI-----1-04 SS,SP--MB-2-85 FS","SI-----1-04,SP--MB-2-85","SP--MB-2C05 FS,SP--MB-2A10 FS,SP--CJP2-17 FS","SP--MB-2C05,SP--MB-2A10,SP--CJP2-17",30,30,30,30,7,7,7,7,6,,"HK1003 -Blackpoint D2 - Rev.0E DD30092021"
1-1949,SI--C--2-50,"(ICSY2)  PRELIMINARY FUNCTION DESCRIPTIONS, LOGICS AND HMI GRAPHICS",5121,"HK1003-Rev.0E-3",TT_Mile,"55902",-,-,-,100,TK_Complete,05/09/2021,05/09/2021,05/09/2021,05/09/2021,"SI--C--2C55 FS,SI--C--2-85 SS,SI--C--2B00 FS,SI--G--2-86 FS,SI--G--2-80 FS","SI--C--2C55,SI--C--2-85,SI--C--2B00,SI--G--2-86,SI--G--2-80","SI--C--2B35 SS,SI--C--2-55 FS","SI--C--2B35,SI--C--2-55",57,57,57,57,13,13,13,13,28,,"HK1003 -Blackpoint D2 - Rev.0E DD30092021"
1-1950,SI--M--2D00,"SYSTEM DOCUMENTS [initial]",5121,"HK1003-Rev.0E-3",TT_Mile,"55902",-,-,-,100,TK_Complete,03/03/2021,03/03/2021,03/03/2021,03/03/2021,"SI-----1-04 SS","SI-----1-04","SI--L--2-25 SS,SI--P--2-45 FS,SI--M--2D20 SS","SI--L--2-25,SI--P--2-45,SI--M--2D20",30,30,30,30,7,7,7,7,5,,"HK1003 -Blackpoint D2 - Rev.0E DD30092021"
1-1951,SI20CPC8A27,"I&C FIELD COMMISSIONING WSC (1) CPC",5121,"HK1003-Rev.0E-3",TT_Task,"55902",-,-,-,0,TK_NotStart,11/04/2023,,08/05/2023,,"SI20CPC8-27 FS,SI20B--8-50 FS","SI20CPC8-27,SI20B--8-50","SI20--P6-75 FS","SI20--P6-75",140,,144,,32,,33,,94,32,"HK1003 -Blackpoint D2 - Rev.0E DD30092021"
1-1952,SI20QC-2-75,"PREPARATION RFQ DOSING CONTAINER QC",5121,"HK1003-Rev.0E-3",TT_Task,"55902",-,-,-,100,TK_Complete,23/04/2021,23/04/2021,29/04/2021,29/04/2021,"SI--3331-32 FS,SI20QC-2-40 FS","SI--3331-32,SI20QC-2-40","SI20QC-2-80 FS,SI20QC-2-89 FS","SI20QC-2-80,SI20QC-2-89",37,37,38,38,8,8,9,9,9,,"HK1003 -Blackpoint D2 - Rev.0E DD30092021"
1-1953,SI20MA-9-06&,"1ST. TURNING GEAR ST",5121,"HK1003-Rev.0E-3",TT_Mile,"55902",-,-,-,0,TK_NotStart,23/06/2023,,23/06/2023,,"","","SI20MA-9-05 SS","SI20MA-9-05",150,,150,,35,,35,,99,8,"HK1003 -Blackpoint D2 - Rev.0E DD30092021"
1-1954,SI20MBA2D80,"QUOTATION STAGE WASH WATER TANK 20MBA",5121,"HK1003-Rev.0E-3",TT_Task,"55902",-,-,-,100,TK_Complete,02/06/2021,02/06/2021,15/09/2021,15/09/2021,"SI20MBA2D75 FS,SI--3332-76 FS","SI20MBA2D75,SI--3332-76","SI20MBA2D85 FS","SI20MBA2D85",43,43,58,58,10,10,13,13,15,,"HK1003 -Blackpoint D2 - Rev.0E DD30092021"
1-1955,SI20MBA2D75,"CONTRACT REVIEW / PREP. RFQ WASH WATER TANK 20MBA",5121,"HK1003-Rev.0E-3",TT_Task,"55902",-,-,-,100,TK_Complete,05/05/2021,05/05/2021,01/06/2021,01/06/2021,"SI--3331-32 FS,SI--G--2A05 FS,SI-----1-03 SS,SI-----1-05 FS","SI--3331-32,SI--G--2A05,SI-----1-03,SI-----1-05","SI20MBA2D80 FS,SI20MBA2D65 FS","SI20MBA2D80,SI20MBA2D65",39,39,43,43,9,9,10,10,11,,"HK1003 -Blackpoint D2 - Rev.0E DD30092021"
1-1956,SI--CKA2-00,"PROJECT DEFINITION / SYSTEM DESCRIPTION FOR THE CUSTOMER",5121,"HK1003-Rev.0E-3",TT_Task,"55902",-,-,-,100,TK_Complete,24/06/2021,24/06/2021,21/07/2021,21/07/2021,"SI20CJF2-82 FS,SI--L--2-50 FF,SI--P--2-50 FF,SI--G--2-50 FF,SI--3332-02 FS","SI20CJF2-82,SI--L--2-50,SI--P--2-50,SI--G--2-50,SI--3332-02","SI--CKA2-16 FS,SI--CKA2-04 FS","SI--CKA2-16,SI--CKA2-04",46,46,50,50,10,10,11,11,19,,"HK1003 -Blackpoint D2 - Rev.0E DD30092021"
1-1957,SP20UBA3H25,"MANUFACTURING ELECTRICAL MODULES 20UBA7910/20",5121,"HK1003-Rev.0E-3",TT_Task,"55902",-,-,-,9,TK_Active,16/09/2021,16/09/2021,16/02/2022,,"SI--UBA2G85 FS,SI--2222-30 FS","SI--UBA2G85,SI--2222-30","SI--UBA3K50 FS,SI20UBA3J20#1 SS,SI20UBA2B-37 SS","SI--UBA3K50,SI20UBA3J20#1,SI20UBA2B-37",58,58,80,,13,13,18,,29,592,"HK1003 -Blackpoint D2 - Rev.0E DD30092021"
1-1958,SI--BAW3-80,"(RFS) READY FOR SHIPMENT IN- / OUTDOOR GROUNDING BAW",5121,"HK1003-Rev.0E-3",TT_FinMile,"55902",-,-,-,0,TK_NotStart,05/04/2022,,05/04/2022,,"SI--BAW4-10 FS","SI--BAW4-10","SI--BAW4-25 FS","SI--BAW4-25",87,,87,,20,,20,,56,1560,"HK1003 -Blackpoint D2 - Rev.0E DD30092021"
1-1959,SI20BAW5C23,"ERECTION OUTDOOR EARTHING/LIGHTNING 20ULA/UHA AREA",5121,"HK1003-Rev.0E-3",TT_Task,"55902",-,-,-,0,TK_NotStart,11/08/2022,,05/10/2022,,"SI--BAW4-40 FS,SI--BAW2-05 FS,SI20ULA5-45 FS,SI20UHA5-15 FS,SI20BAW5A18 SS","SI--BAW4-40,SI--BAW2-05,SI20ULA5-45,SI20UHA5-15,SI20BAW5A18","SI--BAW8-10 FS,SI--BAW8A10 FS,SI20BAW5-15# FF,SI--BAW7-55 FS","SI--BAW8-10,SI--BAW8A10,SI20BAW5-15#,SI--BAW7-55",105,,113,,24,,26,,77,1456,"HK1003 -Blackpoint D2 - Rev.0E DD30092021"
1-1960,SI20MB-4E25,"TRANSPORT GT ACCESSORY EQUIPMENT MB",5121,"HK1003-Rev.0E-3",TT_Task,"55902",-,-,-,0,TK_NotStart,30/04/2022,,24/06/2022,,"SI20MB-3B80 FS","SI20MB-3B80","SI20MB-4-40 FS","SI20MB-4-40",91,,98,,21,,23,,60,504,"HK1003 -Blackpoint D2 - Rev.0E DD30092021"
1-1961,SI20MB-8-25,"COLD COMMISSIONING GT AUXILIARIES 20MB-",5121,"HK1003-Rev.0E-3",TT_Task,"55902",-,-,-,0,TK_NotStart,23/06/2023,,29/06/2023,,"SI20CPA8-25 FS,SI20MBA8D10 FS,SI20MBA8B10 FS,SI20BZL8B25 FS,SI20MBA8-25 FS,SI20MBA8-25 FF,SI20BZL8B27 FS,SI-PM-40 FS,SI20B--8-50 FS,SI20B--8-52 FS,SI20SCA8-17 SS,SI20PGB8B25 FS","SI20CPA8-25,SI20MBA8D10,SI20MBA8B10,SI20BZL8B25,SI20MBA8-25,SI20MBA8-25,SI20BZL8B27,SI-PM-40,SI20B--8-50,SI20B--8-52,SI20SCA8-17,SI20PGB8B25","SI20MB-9-15 FS,SI20MB-8-25# FF","SI20MB-9-15,SI20MB-8-25#",150,,151,,35,,35,,99,8,"HK1003 -Blackpoint D2 - Rev.0E DD30092021"
1-1962,SI20MB-4A25,"TRANSPORT INTERCONNECTING PIPING 20MB-",5121,"HK1003-Rev.0E-3",TT_Task,"55902",-,-,-,0,TK_NotStart,11/06/2022,,10/07/2022,,"SP20MB-3A80 FS","SP20MB-3A80","SI20MBA8A10 FS,SI20MBA8-10 FS,SI20MBA8B10 FS,SI20MBX8-10 FS,SI20MBV8-10 FS,SI20MBA8D10 FS,SI20MBL8-10 FS,SI20MBP8-10 FS,SI20MBX8E10 FS,SI20MBH8-10 FS,SP20MB-4A40 FS,SI20MBA6F15 FS","SI20MBA8A10,SI20MBA8-10,SI20MBA8B10,SI20MBX8-10,SI20MBV8-10,SI20MBA8D10,SI20MBL8-10,SI20MBP8-10,SI20MBX8E10,SI20MBH8-10,SP20MB-4A40,SI20MBA6F15",97,,101,,22,,23,,69,376,"HK1003 -Blackpoint D2 - Rev.0E DD30092021"
1-1963,SI20QU-6H15,"ERECTION, NDT, PT / VALVES SAMPLING QU",5121,"HK1003-Rev.0E-3",TT_Task,"55902",-,-,-,0,TK_NotStart,04/02/2023,,24/03/2023,,"SI---5P6A09 FS,SI20LBA6J15 FF,SI20UMC5C55 FS,SI20QU-6-40 FS,SI20QU-4-40 FS,SI20LBA6H15 FF,SI20LCA6A15 FF,SI20QC-6H17 SS,SI20LBA6J71 FS","SI---5P6A09,SI20LBA6J15,SI20UMC5C55,SI20QU-6-40,SI20QU-4-40,SI20LBA6H15,SI20LCA6A15,SI20QC-6H17,SI20LBA6J71","SI20QU-8-10 FS,SI20QU-7H15 FS,SI20-6-16# FF,SI20-6-16# SS","SI20QU-8-10,SI20QU-7H15,SI20-6-16#,SI20-6-16#",131,,137,,30,,32,,89,408,"HK1003 -Blackpoint D2 - Rev.0E DD30092021"
1-1964,SI20MA-6B02,"PRE-ASSEMBLING/ ERECTION  LP1-OUTER CASING MA",5121,"HK1003-Rev.0E-3",TT_Task,"55902",-,-,-,0,TK_NotStart,27/07/2022,,16/08/2022,,"SI20MA-6-12 FS,SI20MA-5-27 FF,SI20MA-6B00 FS,SI20MA-5-26 FS,SI20MA-6C11 FF","SI20MA-6-12,SI20MA-5-27,SI20MA-6B00,SI20MA-5-26,SI20MA-6C11","SI20MA-6B06 FS,SI20MA-6B04 FS,SI20MA-6B14 FS","SI20MA-6B06,SI20MA-6B04,SI20MA-6B14",103,,106,,24,,24,,75,8,"HK1003 -Blackpoint D2 - Rev.0E DD30092021"
1-1965,SI20MBR7-15,"ELECTRICAL INSTALLATION OF EXHAUST GAS SYSTEM DIFFUSER 20MBR",5121,"HK1003-Rev.0E-3",TT_Task,"55902",-,-,-,0,TK_NotStart,22/10/2022,,04/11/2022,,"SI20MBR6-35 FS,SI20MBR6-48 FS,SI20BZP7-100 FS,SI20BZP7-140 SS,SI20MBR6-49 FS","SI20MBR6-35,SI20MBR6-48,SI20BZP7-100,SI20BZP7-140,SI20MBR6-49","SI20MBR8-26 FS","SI20MBR8-26",116,,117,,27,,27,,84,1400,"HK1003 -Blackpoint D2 - Rev.0E DD30092021"
1-1966,SI20MAD7-15,"ELECTRICAL ERECTION ST BEARING CASINGS",5121,"HK1003-Rev.0E-3",TT_Task,"55902",-,-,-,0,TK_NotStart,12/10/2022,,01/11/2022,,"SI20MA-6-50 FS,SI20BZP7-110 FS","SI20MA-6-50,SI20BZP7-110","SI20C--7L15 SS,SI20BZK7C33 FF,SI20MAD8-10 FS,SI20C--7B17 SS,SI20BZK7D11# FF,SI20BZK7D11# SS","SI20C--7L15,SI20BZK7C33,SI20MAD8-10,SI20C--7B17,SI20BZK7D11#,SI20BZK7D11#",114,,117,,26,,27,,83,304,"HK1003 -Blackpoint D2 - Rev.0E DD30092021"
1-1967,SI20LCB7B15,"ELECTRICAL ERECTION CONDENSATE EXTRACTION PUMP 20LCB",5121,"HK1003-Rev.0E-3",TT_Task,"55902",-,-,-,0,TK_NotStart,16/10/2022,,29/10/2022,,"SI20BZK7E25 SS,SI20LCB6B15 FS","SI20BZK7E25,SI20LCB6B15","SI20LCA8M10 FS,SI20BZK7D11# FF,SI20BZK7D11# SS","SI20LCA8M10,SI20BZK7D11#,SI20BZK7D11#",115,,117,,26,,27,,83,1496,"HK1003 -Blackpoint D2 - Rev.0E DD30092021"
1-1968,SI20MAW7-15,"ELECTRICAL ERECTION SEAL/LEAK STEAM SYSTEM MAW",5121,"HK1003-Rev.0E-3",TT_Task,"55902",-,-,-,0,TK_NotStart,14/12/2022,,27/12/2022,,"SI20MAW6M11 FS,SI20BZK7C33 FF,SI20BZP7-110 SS,SI20BZK7C33 SS,SI20MAV7-15 FS","SI20MAW6M11,SI20BZK7C33,SI20BZP7-110,SI20BZK7C33,SI20MAV7-15","SI20MAW8-10 FS,SI20MAX7-15 FS,SI20BZK7D11# FF,SI20BZK7D11# SS","SI20MAW8-10,SI20MAX7-15,SI20BZK7D11#,SI20BZK7D11#",123,,125,,28,,29,,87,752,"HK1003 -Blackpoint D2 - Rev.0E DD30092021"
1-1969,SI20SMM4-40,"(OTD-OS) ON SITE CRANE SMM01/02/03 FOR 20UMC",5121,"HK1003-Rev.0E-3",TT_FinMile,"55902",-,-,-,0,TK_NotStart,09/03/2022,,09/03/2022,,"SI20SMM4-25 FS","SI20SMM4-25","SI20SMM6-05 FS,SI20UMC5B48 FS","SI20SMM6-05,SI20UMC5B48",83,,83,,19,,19,,52,128,"HK1003 -Blackpoint D2 - Rev.0E DD30092021"
1-1970,SI20SCA2-60,"(DF) INPUT FOR MS3 AIR COMPRESSOR SYSTEM SCA",5121,"HK1003-Rev.0E-3",TT_FinMile,"55902",-,-,-,100,TK_Complete,14/05/2021,14/05/2021,14/05/2021,14/05/2021,"SI20SCA2-75 FS","SI20SCA2-75","SI20UMC2B10 FS","SI20UMC2B10",40,40,40,40,9,9,9,9,12,,"HK1003 -Blackpoint D2 - Rev.0E DD30092021"
1-1971,SI20SCA2-66,"(DF) INPUT FOR M2 AIR COMPRESSOR SYSTEM SCA  (MPA)",5121,"HK1003-Rev.0E-3",TT_FinMile,"55902",-,-,-,100,TK_Complete,30/07/2021,30/07/2021,30/07/2021,30/07/2021,"SI20SCA2-75 FS,SI20SCA2-80 FS,SI20USC2-12 SS,SI20SCA2-89 FS","SI20SCA2-75,SI20SCA2-80,SI20USC2-12,SI20SCA2-89","SI---5P2A10 FS","SI---5P2A10",51,51,51,51,12,12,12,12,23,,"HK1003 -Blackpoint D2 - Rev.0E DD30092021"
1-1972,SI20SCA2-85,"CONTRACT INTO FORCE AIR COMPRESSOR SYSTEM SCA",5121,"HK1003-Rev.0E-3",TT_Mile,"55902",-,-,-,100,TK_Complete,21/09/2021,21/09/2021,21/09/2021,21/09/2021,"SI20SCA2-80 FS,SI-----1-05 FS,SI20SCA2-90 FS","SI20SCA2-80,SI-----1-05,SI20SCA2-90","SI20SCA3-25 FS,SI20SCA2-70 SS,SI20SCA3-26 FS","SI20SCA3-25,SI20SCA2-70,SI20SCA3-26",59,59,59,59,13,13,13,13,30,,"HK1003 -Blackpoint D2 - Rev.0E DD30092021"
1-1973,SI20EK-8-10,"(TOP-00EK) FUEL GAS RECEIVING AND MIXING SYSTEM 01EK",5121,"HK1003-Rev.0E-3",TT_FinMile,"55902",-,-,-,0,TK_NotStart,16/05/2023,,16/05/2023,,"SI20EK-6-19 FS,SI20SGY7-17 FS,SI20BAW5D17 FS,SI20EKG6I15 FS,SI20EKG6H16 FS,SI20BZK7B27 FS","SI20EK-6-19,SI20SGY7-17,SI20BAW5D17,SI20EKG6I15,SI20EKG6H16,SI20BZK7B27","SI20EK-8-97 SS,SI20EK-8-25 FS","SI20EK-8-97,SI20EK-8-25",145,,145,,33,,33,,97,8,"HK1003 -Blackpoint D2 - Rev.0E DD30092021"
1-1974,SI20HA-3G80,"(RFS) READY FOR SHIPMENT HEATING SURFACES HRSG20 (Incl. Hangers/Baffles/ Installation Material)",5121,"HK1003-Rev.0E-3",TT_FinMile,"55902",-,-,-,0,TK_NotStart,15/03/2022,,15/03/2022,,"SI20HA-4B10 FS","SI20HA-4B10","SI20HA-4G25 FS,SI20HA-4G46 FS,SI20HA-4G47 FS,SI20HA-4G48 FS,SI20HA-4G49 FS,SI20HA-4G50 FS","SI20HA-4G25,SI20HA-4G46,SI20HA-4G47,SI20HA-4G48,SI20HA-4G49,SI20HA-4G50",84,,84,,19,,19,,53,0,"HK1003 -Blackpoint D2 - Rev.0E DD30092021"
1-1975,SI20MA-5-26,"GROUTING OF FRONT AND REAR HP-BEARING PEDESTALS MA",5121,"HK1003-Rev.0E-3",TT_Task,"55902",-,-,-,0,TK_NotStart,10/07/2022,,17/07/2022,,"SI20MA-6-30 FS","SI20MA-6-30","SI20MA-6C11 FS,SI20MA-6-50 FS,SI20MA-6B40 FS,SI20MA-6-65 FS,SI20MA-6A15 FS,SI20MA-6B02 FS,SI20MA-6A17# FF,SI20MKA6-09 SS,SI20MKA6-30 FS","SI20MA-6C11,SI20MA-6-50,SI20MA-6B40,SI20MA-6-65,SI20MA-6A15,SI20MA-6B02,SI20MA-6A17#,SI20MKA6-09,SI20MKA6-30",101,,102,,23,,23,,73,80,"HK1003 -Blackpoint D2 - Rev.0E DD30092021"
1-1976,SI20MA-6-35,"ALIGNMENT REAR LP1-BEARING PEDESTAL TO DRAWING AND DEFLECTION CURVE MA",5121,"HK1003-Rev.0E-3",TT_Task,"55902",-,-,-,0,TK_NotStart,06/07/2022,,14/07/2022,,"SI20MA-6B47 FS","SI20MA-6B47","SI20MA-5-25 FS,SI20MA-6-12 FS,SI20MA-6A17# FF,SI20LBF6H47 FS","SI20MA-5-25,SI20MA-6-12,SI20MA-6A17#,SI20LBF6H47",100,,101,,23,,23,,72,24,"HK1003 -Blackpoint D2 - Rev.0E DD30092021"
1-1977,SI20MA-6B47,"PLACING LP1-TURBINE PEDESTALS MA",5121,"HK1003-Rev.0E-3",TT_Task,"55902",-,-,-,0,TK_NotStart,26/06/2022,,05/07/2022,,"SI20MA-6-07 SS","SI20MA-6-07","SI20MA-6-35 FS,SI20MA-6A17# FF,SI20MA-6B83 FS","SI20MA-6-35,SI20MA-6A17#,SI20MA-6B83",99,,100,,23,,23,,71,24,"HK1003 -Blackpoint D2 - Rev.0E DD30092021"
1-1978,SP20MB-3-251,"DESIGN / MANUFACTURING GT ACCESSORY EQUIPMENT / CCR / IN-LINE COMPONENTS GT-PIPING MB",5121,"HK1003-Rev.0E-3",TT_Task,"55902",-,-,-,0,TK_NotStart,27/11/2021,,01/04/2022,,"SI20MBA3-84 FF,SP20MB-2-85 FS,SP20MB-3-25 FF","SI20MBA3-84,SP20MB-2-85,SP20MB-3-25","SI20MB-3-72 FS","SI20MB-3-72",69,,86,,16,,20,,39,504,"HK1003 -Blackpoint D2 - Rev.0E DD30092021"
1-1979,SI--ZTA2A75,"PREPARATION RFQ CHEMICAL CLEANING SYSTEM ZTA",5121,"HK1003-Rev.0E-3",TT_Task,"55902",-,-,-,0,TK_NotStart,02/12/2021,,12/01/2022,,"SI--3331-32 SS,SI--ZTA2A00 FS","SI--3331-32,SI--ZTA2A00","SI--PM-2-90 FS,SI--ZTA2A80 FS","SI--PM-2-90,SI--ZTA2A80",69,,75,,16,,17,,40,1264,"HK1003 -Blackpoint D2 - Rev.0E DD30092021"
1-1980,SI--HB-3C15,"DESIGN SECONDARY STEEL STRUCTURE HRSG",5121,"HK1003-Rev.0E-3",TT_Task,"55902",-,-,-,100,TK_Complete,13/03/2021,13/03/2021,15/07/2021,15/07/2021,"SI--HB-3-25 FS,SI--HA-2-85 FS","SI--HB-3-25,SI--HA-2-85","SI20HB-3C25 SS,SI20HB-3C91 FS,SI--HB-2-18 FS","SI20HB-3C25,SI20HB-3C91,SI--HB-2-18",32,32,49,49,7,7,11,11,6,,"HK1003 -Blackpoint D2 - Rev.0E DD30092021"
1-1981,SP--MKA2-86,"CONTRACT INTO FORCE GENERATOR MKA INCL. COOLER MKA70",5121,"HK1003-Rev.0E-3",TT_Mile,"55902",-,-,-,100,TK_Complete,15/01/2021,15/01/2021,15/01/2021,15/01/2021,"SI-----1-04 SS,SI-----1-05 SS,SI--3331-35 FS","SI-----1-04,SI-----1-05,SI--3331-35","SP20MKA3-25 SS,SP--MKA2-87 FS,SI20MKA3-85 SS,SP20MKA3B25 FS,SP--MKA2B41 FS","SP20MKA3-25,SP--MKA2-87,SI20MKA3-85,SP20MKA3B25,SP--MKA2B41",23,23,23,23,5,5,5,5,2,,"HK1003 -Blackpoint D2 - Rev.0E DD30092021"
1-1982,SI20MA-6B37,"AXIAL AND RADIAL ALIGNMENT LP1-BOTTOM HALF INNER CASING TO SHAFT AND BLADING CLEARANCE MA",5121,"HK1003-Rev.0E-3",TT_Task,"55902",-,-,-,0,TK_NotStart,02/10/2022,,15/10/2022,,"SI20MA-6B36 FS,SI20MA-6-65 FS","SI20MA-6B36,SI20MA-6-65","SI20MA-6B38 SS","SI20MA-6B38",113,,115,,26,,26,,82,8,"HK1003 -Blackpoint D2 - Rev.0E DD30092021"
1-1983,SI--CYA4-40,"(OTD-OS) ON SITE TELECOMM. SUBCONTR. / MATERIAL CYA",5121,"HK1003-Rev.0E-3",TT_FinMile,"55902",-,-,-,0,TK_NotStart,19/11/2022,,19/11/2022,,"SI--CYA4-25 FS","SI--CYA4-25","SI20CY-7-15 FS,SI--CYA7A15 FS","SI20CY-7-15,SI--CYA7A15",120,,120,,28,,28,,85,136,"HK1003 -Blackpoint D2 - Rev.0E DD30092021"
1-1984,SI20SAM6E15,"ERECTION EQUIPMENT HVAC SYSTEM FOR UMC/USA 20SA",5121,"HK1003-Rev.0E-3",TT_Task,"55902",-,-,-,0,TK_NotStart,14/10/2022,,08/12/2022,,"SI20S--2J31 FS,SI20S--4-41 FS,SI20UMC5C55 FS,SI20S--4-40 FS,SI20SA-6-20& FS,SI20UMC5D40 FS,SI20UMC5D40 FF,SI20UMC5E78 FS","SI20S--2J31,SI20S--4-41,SI20UMC5C55,SI20S--4-40,SI20SA-6-20&,SI20UMC5D40,SI20UMC5D40,SI20UMC5E78","SI20SAM7-25 SS,SI20SAM6F15 FS,SI20SAM8-11 FS","SI20SAM7-25,SI20SAM6F15,SI20SAM8-11",114,,122,,26,,28,,83,1072,"HK1003 -Blackpoint D2 - Rev.0E DD30092021"
1-1985,SI20SAM6F15,"ERECTION DUCTS FOR HVAC SYSTEM UMC",5121,"HK1003-Rev.0E-3",TT_Task,"55902",-,-,-,0,TK_NotStart,09/12/2022,,22/12/2022,,"SI20UMC5C55 FS,SI20SAM6E15 FS,SI20SMM6-70 FS,SI20UMC5D40 FS","SI20UMC5C55,SI20SAM6E15,SI20SMM6-70,SI20UMC5D40","SI20SAM7-25 FF,SI20SAM8-11 FS","SI20SAM7-25,SI20SAM8-11",122,,124,,28,,29,,86,1128,"HK1003 -Blackpoint D2 - Rev.0E DD30092021"
1-1986,SI20S--3-80,"(RFS) READY FOR SHIPMENT DUCT FOR HVAC SYSTEM UMC 20SA",5121,"HK1003-Rev.0E-3",TT_FinMile,"55902",-,-,-,0,TK_NotStart,21/07/2022,,21/07/2022,,"SI20SAM4B10 FS","SI20SAM4B10","SI20SAM4-25 FS","SI20SAM4-25",102,,102,,23,,23,,74,1080,"HK1003 -Blackpoint D2 - Rev.0E DD30092021"
1-1987,SI20SAM4-25,"TRANSPORT DUCT FOR HVAC SYSTEM UMC 20SA",5121,"HK1003-Rev.0E-3",TT_Task,"55902",-,-,-,0,TK_NotStart,22/07/2022,,12/10/2022,,"SI20S--3-80 FS","SI20S--3-80","SI20S--4-40 FS,SI20S--2J31 SS","SI20S--4-40,SI20S--2J31",102,,114,,24,,26,,74,1080,"HK1003 -Blackpoint D2 - Rev.0E DD30092021"
1-1988,SI--BZP2-85,"CONTRACT INTO FORCE CABLE SUPPORT SYSTEM BZP",5121,"HK1003-Rev.0E-3",TT_Mile,"55902",-,-,-,0,TK_NotStart,06/10/2021,,06/10/2021,,"SI--BZP2-80 FS","SI--BZP2-80","SI--BZP2-30 FS,SI--BZP2-91 FS,SI--BZP2-86 SS,SI--BZP3-25 FS","SI--BZP2-30,SI--BZP2-91,SI--BZP2-86,SI--BZP3-25",61,,61,,14,,14,,32,144,"HK1003 -Blackpoint D2 - Rev.0E DD30092021"
1-1989,SP20SGJ4-80,"(RFS) READY FOR SHIPMENT (NORTH SEA PORT) FIRE FIGHTING / GAS DETECTION 20SGJ / 20CYQ / 20CYE",5121,"HK1003-Rev.0E-3",TT_FinMile,"55902",-,-,-,0,TK_NotStart,25/02/2022,,25/02/2022,,"SP--SGJ2-87 SS,SP20SGJ4-10 FS","SP--SGJ2-87,SP20SGJ4-10","SI20SGJ4-25 FS","SI20SGJ4-25",81,,81,,19,,19,,51,1736,"HK1003 -Blackpoint D2 - Rev.0E DD30092021"
1-1990,SI20--P8-14&,"START CHEMICAL CLEANING HRSG20 / 20 STEAM LINES TO ST",5121,"HK1003-Rev.0E-3",TT_Mile,"55902",-,-,-,0,TK_NotStart,13/05/2023,,13/05/2023,,"","","SI20--P6-75 FS","SI20--P6-75",145,,145,,33,,33,,97,0,"HK1003 -Blackpoint D2 - Rev.0E DD30092021"
1-1991,SI20M--9-50&,"START BYPASS OPERATION ST20",5121,"HK1003-Rev.0E-3",TT_Mile,"55902",-,-,-,0,TK_NotStart,25/07/2023,,25/07/2023,,"","","SI20M--9-50 SS","SI20M--9-50",155,,155,,36,,36,,99,0,"HK1003 -Blackpoint D2 - Rev.0E DD30092021"
1-1992,SI20MKA6E13,"INSTALLING OF HIGH VOLTAGE BUSHINGS MKA",5121,"HK1003-Rev.0E-3",TT_Task,"55902",-,-,-,0,TK_NotStart,07/09/2022,,08/09/2022,,"SI20MKA6-32 FS","SI20MKA6-32","SI20MKA6-63 FS","SI20MKA6-63",109,,109,,25,,25,,80,1856,"HK1003 -Blackpoint D2 - Rev.0E DD30092021"
1-1993,SI20GHC6-90&,"DEMIN. WATER AVAILABLE / REQUIRED (PERMANENT)",5121,"HK1003-Rev.0E-3",TT_Mile,"55902",-,-,-,0,TK_NotStart,18/03/2023,,18/03/2023,,"SI--GHC6-10 FS,SI20TP-116& FS","SI--GHC6-10,SI20TP-116&","SI20HA-6-56 FS,SI20UMY6M70 FS,SI20PA-6H70 FS","SI20HA-6-56,SI20UMY6M70,SI20PA-6H70",137,,137,,31,,31,,93,0,"HK1003 -Blackpoint D2 - Rev.0E DD30092021"
1-1994,SI--BZP2-50,"FINAL BOQ CABLE SUPPORT SYSTEM BZP",5121,"HK1003-Rev.0E-3",TT_FinMile,"55902",-,-,-,0,TK_NotStart,26/05/2022,,26/05/2022,,"SI--BZP2-30 FS,SI-----1-05 FS","SI--BZP2-30,SI-----1-05","SI--BZP2-00# FF,SI--BZP2-86 FS","SI--BZP2-00#,SI--BZP2-86",94,,94,,22,,22,,66,296,"HK1003 -Blackpoint D2 - Rev.0E DD30092021"
1-1995,SI--BZP3-80,"(RFS) READY FOR SHIPMENT CABLE SUPPORT SYSTEM BZP (LOT 1)",5121,"HK1003-Rev.0E-3",TT_FinMile,"55902",-,-,-,0,TK_NotStart,22/02/2022,,22/02/2022,,"SI--BZP4-10 FS","SI--BZP4-10","SI--BZP2-05 FS,SI--BZP4-25 FS","SI--BZP2-05,SI--BZP4-25",81,,81,,19,,19,,50,144,"HK1003 -Blackpoint D2 - Rev.0E DD30092021"
1-1996,SI20MKA6-34,"FIXING OF GENERATOR IN POSITION MKA",5121,"HK1003-Rev.0E-3",TT_Task,"55902",-,-,-,0,TK_NotStart,10/09/2022,,23/09/2022,,"SI20MBA6-35 FS","SI20MBA6-35","SI20MKA6-53 FS,SI20MKA6-50 FS,SI20MKA6-80 FS,SI20MKA6F08 FS,SI20MKA5-26 SS","SI20MKA6-53,SI20MKA6-50,SI20MKA6-80,SI20MKA6F08,SI20MKA5-26",110,,111,,25,,26,,80,688,"HK1003 -Blackpoint D2 - Rev.0E DD30092021"
1-1997,SI20MKA5-26,"GROUTING ANCHOR BOLTS MKA",5121,"HK1003-Rev.0E-3",TT_Task,"55902",-,-,-,0,TK_NotStart,02/02/2023,,08/02/2023,,"SI20MKA6-34 SS,SI20MKA6-81 FS,SI20MKA6-83 FS","SI20MKA6-34,SI20MKA6-81,SI20MKA6-83","SI20MKA6E40 FS","SI20MKA6E40",130,,131,,30,,30,,89,336,"HK1003 -Blackpoint D2 - Rev.0E DD30092021"
1-1998,SI20QJ-8B12,"(TOP-20QJA-01) H2 CENTRAL SUPPLY SYSTEM",5121,"HK1003-Rev.0E-3",TT_FinMile,"55902",-,-,-,0,TK_NotStart,24/02/2023,,24/02/2023,,"SI20QJ-6B45 FS,SI--9998-22& FS,SI20QJA7A15 FS","SI20QJ-6B45,SI--9998-22&,SI20QJA7A15","SI20MKG8-26 SS,SI20MKQ8-25 SS","SI20MKG8-26,SI20MKQ8-25",133,,133,,31,,31,,91,136,"HK1003 -Blackpoint D2 - Rev.0E DD30092021"
1-1999,SI20QJ-6B45,"ERECTION GAS SUPPLY BOTTLES FOR H2",5121,"HK1003-Rev.0E-3",TT_Task,"55902",-,-,-,0,TK_NotStart,24/09/2022,,30/09/2022,,"SI20QJ-4B40 FS,SI20UTG5-76 FS,SI20UTG2S-40 FS,SI20EGx6-65 FS","SI20QJ-4B40,SI20UTG5-76,SI20UTG2S-40,SI20EGx6-65","SI20QJ-8B12 FS","SI20QJ-8B12",112,,112,,26,,26,,81,1312,"HK1003 -Blackpoint D2 - Rev.0E DD30092021"
1-2000,SI20UMC5I45,"(RFE) STEEL STRUCTURE ANNEX 20UMC",5121,"HK1003-Rev.0E-3",TT_FinMile,"55902",-,-,-,0,TK_NotStart,17/04/2022,,17/04/2022,,"SI20UMC5B47 FS","SI20UMC5B47","SI20UTG5-10 FS","SI20UTG5-10",89,,89,,20,,20,,58,2600,"HK1003 -Blackpoint D2 - Rev.0E DD30092021"
1-2001,SI20UEN2-95,"PREPARATION FOUNDATION GROUNDING DWGS 01UEN",5121,"HK1003-Rev.0E-3",TT_Task,"55902",-,-,-,57,TK_Active,22/09/2021,22/09/2021,05/10/2021,,"SI20UEN2-90 FF","SI20UEN2-90","SI20UEN2-75 FS","SI20UEN2-75",59,59,61,,13,13,14,,30,2096,"HK1003 -Blackpoint D2 - Rev.0E DD30092021"
1-2002,SI--BZL2-88,"SPECIFICATION READY LIGHTING/SMALL POWER BZL",5121,"HK1003-Rev.0E-3",TT_Mile,"55902",-,-,-,100,TK_Complete,15/05/2021,15/05/2021,15/05/2021,15/05/2021,"SI--BZL2-86 FS","SI--BZL2-86","SI--BZL2-85 SS","SI--BZL2-85",41,41,41,41,9,9,9,9,12,,"HK1003 -Blackpoint D2 - Rev.0E DD30092021"
1-2003,SI20MA-6B12,"FITTING/WELDING/ASSEMBLING CROSS OVER PIPE LP1 MA",5121,"HK1003-Rev.0E-3",TT_Task,"55902",-,-,-,0,TK_NotStart,23/10/2022,,12/11/2022,,"SI20MA-6B38 FS","SI20MA-6B38","SI20MA-6B39 FS","SI20MA-6B39",116,,119,,27,,27,,84,8,"HK1003 -Blackpoint D2 - Rev.0E DD30092021"
1-2004,SI20MA-6B39,"FIT AND WELDING LP1-STEAM INLET LINES (incl. DISSASSEMBLING) MA",5121,"HK1003-Rev.0E-3",TT_Task,"55902",-,-,-,0,TK_NotStart,13/11/2022,,03/12/2022,,"SI20MA-6B38 FS,SI20MA-6B12 FS","SI20MA-6B38,SI20MA-6B12","SI20MA-6B35 FS,SI20MA-6A30 SS,SI20MA-6B85 FS","SI20MA-6B35,SI20MA-6A30,SI20MA-6B85",119,,122,,27,,28,,85,8,"HK1003 -Blackpoint D2 - Rev.0E DD30092021"
1-2005,SI20MA-6B38,"INSTALLING GUIDE BLADE RINGS AND LP1-TOP HALF INNER CASING AND LP1-TOP HALF OUTER CASING MA",5121,"HK1003-Rev.0E-3",TT_Task,"55902",-,-,-,0,TK_NotStart,02/10/2022,,22/10/2022,,"SI20MA-6B37 SS,SI20MA-6B36 FS","SI20MA-6B37,SI20MA-6B36","SI20MA-6E41 FS,SI20MKA6F08 FS,SI20MA-6D57 FS,SI20MA-6D55 FS,SI20MA-6B39 FS,SI20MA-6B12 FS","SI20MA-6E41,SI20MKA6F08,SI20MA-6D57,SI20MA-6D55,SI20MA-6B39,SI20MA-6B12",113,,116,,26,,27,,82,8,"HK1003 -Blackpoint D2 - Rev.0E DD30092021"
1-2006,SI20MA-6B36,"PRELIMINARY ALIGNMENT LP1-TURBINE SHAFT AND LP1-SEALING CASING AND LP1-BOTTOM HALF INNER CASING MA",5121,"HK1003-Rev.0E-3",TT_Task,"55902",-,-,-,0,TK_NotStart,25/09/2022,,01/10/2022,,"SI20MA-6B16 FS","SI20MA-6B16","SI20MA-6B37 FS,SI20MA-6B35 FS,SI20LBF6H47 FF,SI20MA-6-50 FS,SI20MA-6B38 FS,SI20MA-6-65 FS","SI20MA-6B37,SI20MA-6B35,SI20LBF6H47,SI20MA-6-50,SI20MA-6B38,SI20MA-6-65",112,,113,,26,,26,,82,8,"HK1003 -Blackpoint D2 - Rev.0E DD30092021"
1-2007,SI20MA-6B14,"SET DOWN AND ALIGNMENT LP1-BOTTOM HALF INNER CASING IN LP1-BOTTOM HALF OUTER CASING MA",5121,"HK1003-Rev.0E-3",TT_Task,"55902",-,-,-,0,TK_NotStart,19/09/2022,,22/09/2022,,"SI20MA-6B06 FS,SI20MA-6C55 FS,SI20MA-6B45 FS,SI20MA-6B02 FS,SP20MA-4C42 FS","SI20MA-6B06,SI20MA-6C55,SI20MA-6B45,SI20MA-6B02,SP20MA-4C42","SI20MA-6B16 FS,SI20MA-6B82 FS","SI20MA-6B16,SI20MA-6B82",111,,111,,25,,26,,81,8,"HK1003 -Blackpoint D2 - Rev.0E DD30092021"
1-2008,SI--3331-31,"PROJECT SPECIFIC ADAPTION OF GENERAL TCCs",5121,"HK1003-Rev.0E-3",TT_Task,"55902",-,-,-,100,TK_Complete,01/08/2020,01/08/2020,21/08/2020,21/08/2020,"SI-----1-03 FS,SI20---2M10 FS","SI-----1-03,SI20---2M10","SI--B--2-81 SS,SI--3331-35 FS,SI--3332-17 FS,SI--3331-32 FS","SI--B--2-81,SI--3331-35,SI--3332-17,SI--3331-32",0,0,2,2,0,0,0,0,0,,"HK1003 -Blackpoint D2 - Rev.0E DD30092021"
1-2009,SI--3331-30,"PROJECT INSTRUCTIONS RELEVANT FOR PURCHASE ORDERS AVAILABLE",5121,"HK1003-Rev.0E-3",TT_Mile,"55902",-,-,-,100,TK_Complete,10/01/2021,10/01/2021,10/01/2021,10/01/2021,"SI-----1-01 SS,SI-----1-05 FS","SI-----1-01,SI-----1-05","SI--3331-32 SS","SI--3331-32",23,23,23,23,5,5,5,5,1,,"HK1003 -Blackpoint D2 - Rev.0E DD30092021"
1-2010,SI20UBA4G25,"TRANSPORT ELECTRICAL MODULES 20UBA7110/20/30  (TO SITE)",5121,"HK1003-Rev.0E-3",TT_Task,"55902",-,-,-,0,TK_NotStart,28/04/2022,,22/06/2022,,"SI20UBA3G80 FS,SI-P222-100 FS","SI20UBA3G80,SI-P222-100","SI20BAB4-25 SS,SI20UBA4-42 FS,SI20UBA4B46 FS","SI20BAB4-25,SI20UBA4-42,SI20UBA4B46",90,,98,,21,,23,,59,688,"HK1003 -Blackpoint D2 - Rev.0E DD30092021"
1-2011,SI20UBA3E57,"INSTALL. COMP., INT. CABLING, FIRE PROT., SHOP TEST ELECTRICAL MODULES 20UBA7110/20/30",5121,"HK1003-Rev.0E-3",TT_Task,"55902",-,-,-,0,TK_NotStart,19/01/2022,,06/04/2022,,"SI20UBA4G50 FS,SI20UBA2G03 FS,SI20UBA4-52 FS,SP--B--2-13 FS","SI20UBA4G50,SI20UBA2G03,SI20UBA4-52,SP--B--2-13","SI20UBA3B71 FS","SI20UBA3B71",76,,87,,17,,20,,46,688,"HK1003 -Blackpoint D2 - Rev.0E DD30092021"
1-2012,SI20UHX2-15,"DETAIL DESIGN CONCRETE STRUCTURE 20UHX (if required)",5121,"HK1003-Rev.0E-3",TT_Task,"55902",-,-,-,0,TK_NotStart,06/12/2021,,19/01/2022,,"SI20UHX2-5 FS,SI20UHX2-10 FS","SI20UHX2-5,SI20UHX2-10","SI20UHX2-40 FS,SI20UHX2-43 FS","SI20UHX2-40,SI20UHX2-43",70,,76,,16,,17,,41,3088,"HK1003 -Blackpoint D2 - Rev.0E DD30092021"
1-2013,SI20LBH6D15,"ERECTION BLOW DOWN TANK 20LBH",5121,"HK1003-Rev.0E-3",TT_Task,"55902",-,-,-,0,TK_NotStart,21/05/2022,,19/06/2022,,"SI20LBH4D40 FS,SI20LBH6D16 FS,SI20UHW3-25 FS,SI20UMY6M72 FS","SI20LBH4D40,SI20LBH6D16,SI20UHW3-25,SI20UMY6M72","SI20LBH8D10 FS,SI20UHW6A-15 FF","SI20LBH8D10,SI20UHW6A-15",94,,98,,21,,22,,66,1368,"HK1003 -Blackpoint D2 - Rev.0E DD30092021"
1-2014,SI20UBF5D15,"CONSTRUCTION FENCING FINISHING WORKS 20UBE/UBF",5121,"HK1003-Rev.0E-3",TT_Task,"55902",-,-,-,0,TK_NotStart,26/10/2022,,15/11/2022,,"SI20BAT4-10 FS,SI20UBF3D25 FS,SI20BAA7-15 FS","SI20BAT4-10,SI20UBF3D25,SI20BAA7-15","SI20UBF5D45 FS","SI20UBF5D45",116,,119,,27,,27,,84,960,"HK1003 -Blackpoint D2 - Rev.0E DD30092021"
1-2015,SI20UBF5D45,"(RFE) FENCING, FINISHING WORKS 20UBE/UBF",5121,"HK1003-Rev.0E-3",TT_FinMile,"55902",-,-,-,0,TK_NotStart,15/11/2022,,15/11/2022,,"SI20UBF5D15 FS","SI20UBF5D15","SI--BAW7-55 FS,SI20CHA8-25 FS,SI20BZL7-38 FS","SI--BAW7-55,SI20CHA8-25,SI20BZL7-38",119,,119,,27,,27,,85,960,"HK1003 -Blackpoint D2 - Rev.0E DD30092021"
1-2016,SI20UBF3D25,"PURCHASING, TRANSPORT FENCING, FINISHING WORKS MATERIAL 20UBF",5121,"HK1003-Rev.0E-3",TT_Task,"55902",-,-,-,0,TK_NotStart,22/06/2022,,13/09/2022,,"SI--UBF2-78 FS","SI--UBF2-78","SI20UBF5D15 FS","SI20UBF5D15",98,,110,,23,,25,,70,960,"HK1003 -Blackpoint D2 - Rev.0E DD30092021"
1-2017,SI20UBF5B10,"(HS) START ERECTION STEEL STRUCTURE 20UBE/UBF",5121,"HK1003-Rev.0E-3",TT_Mile,"55902",-,-,-,0,TK_NotStart,23/04/2022,,23/04/2022,,"SI20UBF5E45 FS,SI20UBF3B25 FS","SI20UBF5E45,SI20UBF3B25","SI20UBF5B15 FS,SI20BAT5B15 FS","SI20UBF5B15,SI20BAT5B15",90,,90,,21,,21,,59,880,"HK1003 -Blackpoint D2 - Rev.0E DD30092021"
1-2018,SI20UBA2G75,"(F) CONCRETE STRUCTURE DWGS ON SITE RELEASED FOR EXECUTION 20UBA8110/20",5121,"HK1003-Rev.0E-3",TT_FinMile,"55902",-,-,-,0,TK_NotStart,18/04/2022,,18/04/2022,,"SI20UBA2C50 FS,SI20UBA2C61 FS,SI--UBA2-103 FS","SI20UBA2C50,SI20UBA2C61,SI--UBA2-103","SI20UBA5-59 FS,SI20UBD5-55 FS","SI20UBA5-59,SI20UBD5-55",89,,89,,20,,20,,58,1256,"HK1003 -Blackpoint D2 - Rev.0E DD30092021"
1-2019,SI20LBA7H15,"ELECTRICAL ERECTION PIPE / VALVES 20LBA10",5121,"HK1003-Rev.0E-3",TT_Task,"55902",-,-,-,0,TK_NotStart,25/03/2023,,31/03/2023,,"SI20BZK7E25 FF,SI20LBA6H45 FF,SI20BZP7D18 FS,SI20BZP7D19 FS,SI20BZP7-5 FS,SI20BZP7-196 FS,SI20BZP7-174 FS,SI20UMY6M10 FS,SI20UMY6M11 FS,SI20UMY6M12 FS,SI--2227-68 FS,SI--BZP2-05 FS,SI--PEE7-20 FS,SI--BZP4B40 FS","SI20BZK7E25,SI20LBA6H45,SI20BZP7D18,SI20BZP7D19,SI20BZP7-5,SI20BZP7-196,SI20BZP7-174,SI20UMY6M10,SI20UMY6M11,SI20UMY6M12,SI--2227-68,SI--BZP2-05,SI--PEE7-20,SI--BZP4B40","SI20LBA8J10 FS,SI20LBB8J11 FS,SI20LBG8A10 FS,SI20LBA8H10 FS,SI20LBG8A10 FF,SI20LBB8J11 FF,SI20LBA8H10 FF,SI20LBA8J10 FF,SI20BZK7D11# FF,SI20BZK7D11# SS","SI20LBA8J10,SI20LBB8J11,SI20LBG8A10,SI20LBA8H10,SI20LBG8A10,SI20LBB8J11,SI20LBA8H10,SI20LBA8J10,SI20BZK7D11#,SI20BZK7D11#",138,,138,,32,,32,,93,192,"HK1003 -Blackpoint D2 - Rev.0E DD30092021"
1-2020,SI20MKA6-40,"(RFP) READY FOR PIPE CONNECTION GENERATOR SKIDS READY FOR PIPE CONNECTION MKA",5121,"HK1003-Rev.0E-3",TT_FinMile,"55902",-,-,-,0,TK_NotStart,29/08/2022,,29/08/2022,,"SI20MKA6E16 FS","SI20MKA6E16","SI20PGB6H17 FS","SI20PGB6H17",108,,108,,25,,25,,79,1696,"HK1003 -Blackpoint D2 - Rev.0E DD30092021"
1-2021,SI--BFT2-80,"QUOTATION STAGE LV-TRANSFORMERS BFT",5121,"HK1003-Rev.0E-3",TT_Task,"55902",-,-,-,100,TK_Complete,30/07/2021,30/07/2021,21/09/2021,21/09/2021,"SI--BFT2-75 FS","SI--BFT2-75","SI--BFT2-85 FS","SI--BFT2-85",51,51,59,59,12,12,13,13,23,,"HK1003 -Blackpoint D2 - Rev.0E DD30092021"
1-2022,SI--BFT2-15,"BASIC DESIGN / SPECIFICATION LV-TRANSFORMERS BFT",5121,"HK1003-Rev.0E-3",TT_Task,"55902",-,-,-,100,TK_Complete,18/05/2021,18/05/2021,29/07/2021,29/07/2021,"SI--3331-32 FS,SI--B--2A50 FS,SI--3332-26 FS,SI-----1-03 SS,SI-----1-05 FS","SI--3331-32,SI--B--2A50,SI--3332-26,SI-----1-03,SI-----1-05","SI--BFT2-75 FS,SI--BFT2-60 FS","SI--BFT2-75,SI--BFT2-60",41,41,51,51,9,9,12,12,13,,"HK1003 -Blackpoint D2 - Rev.0E DD30092021"
1-2023,SI20MB-9-10,"SAFETY VALVES TESTING, 1ST. BASELOAD GT20",5121,"HK1003-Rev.0E-3",TT_Task,"55902",-,-,-,0,TK_NotStart,03/07/2023,,04/07/2023,,"SI20MKA9-42 FS","SI20MKA9-42","SI20M--9-55 SS,SI20HA-9A45 SS","SI20M--9-55,SI20HA-9A45",152,,152,,35,,35,,99,0,"HK1003 -Blackpoint D2 - Rev.0E DD30092021"
1-2024,SI--PAD2-85,"CONTRACT INTO FORCE COOLING TOWER EQUIPMENT PAD (GFK)",5121,"HK1003-Rev.0E-3",TT_Mile,"55902",-,-,-,100,TK_Complete,19/02/2021,19/02/2021,19/02/2021,19/02/2021,"SI--PAD2-80 FS,SI-----1-05 FS,SI--3331-32 FS,SI--3332-76 FS","SI--PAD2-80,SI-----1-05,SI--3331-32,SI--3332-76","SI20PAD3-24 FS,SI--PAD2-60 SS,SI20PAD3-25# FS,SI--PAD2-87 FS,SI--PAD2-92 FS,SI-P222-155 FS,SI20URA2-15 FS","SI20PAD3-24,SI--PAD2-60,SI20PAD3-25#,SI--PAD2-87,SI--PAD2-92,SI-P222-155,SI20URA2-15",28,28,28,28,6,6,6,6,5,,"HK1003 -Blackpoint D2 - Rev.0E DD30092021"
1-2025,SI--PAD2-60,"(DF) INPUT FOR MS3 COOLING TOWER PAD",5121,"HK1003-Rev.0E-3",TT_FinMile,"55902",-,-,-,100,TK_Complete,05/03/2021,05/03/2021,05/03/2021,05/03/2021,"SI--PAD2-86 SS,SI--PAD2-85 SS,SI--PAD2-75 SS","SI--PAD2-86,SI--PAD2-85,SI--PAD2-75","SI-P222-155 FS","SI-P222-155",30,30,30,30,7,7,7,7,6,,"HK1003 -Blackpoint D2 - Rev.0E DD30092021"
1-2026,SI--PAD2-80,"QUOTATION STAGE COOLING TOWER EQUIPMENT PAD (GFK)",5121,"HK1003-Rev.0E-3",TT_Task,"55902",-,-,-,100,TK_Complete,20/12/2020,20/12/2020,18/02/2021,18/02/2021,"SI--PAD2-20 FS","SI--PAD2-20","SI--PAD2-85 FS","SI--PAD2-85",20,20,28,28,4,4,6,6,1,,"HK1003 -Blackpoint D2 - Rev.0E DD30092021"
1-2027,SI20PAD8-55,"COMMISSIONING COOLING WATER SYSTEM",5121,"HK1003-Rev.0E-3",TT_Task,"55902",-,-,-,0,TK_NotStart,20/05/2023,,23/06/2023,,"SI20PAB8-25 FS,SI20PAA8-20 FS,SI--BFT8-25 SS,SI20PAD8-10 FS,SI20UBA8-50 SS,SI-PM-40 FS,SI--BFT8-27 SS,SI-P222-145 FS,SI20TPM15A8-30 SS,SI20TPM16A8-30 SS","SI20PAB8-25,SI20PAA8-20,SI--BFT8-25,SI20PAD8-10,SI20UBA8-50,SI-PM-40,SI--BFT8-27,SI-P222-145,SI20TPM15A8-30,SI20TPM16A8-30","SI20HA-9A45 FS,SI20MB-9-15 FS,SI20PAD8-45 SS,SI20MA-9-05 SS,SI20MB-9-05 SS","SI20HA-9A45,SI20MB-9-15,SI20PAD8-45,SI20MA-9-05,SI20MB-9-05",146,,150,,34,,35,,97,56,"HK1003 -Blackpoint D2 - Rev.0E DD30092021"
1-2028,SI20BAA7-05,"ERECTION CURRENT TRANSFORMER 20BAA",5121,"HK1003-Rev.0E-3",TT_Task,"55902",-,-,-,0,TK_NotStart,09/09/2022,,22/09/2022,,"SI20MKA7-42 FS,SI20MKA7-89 FS,SI20UBX5B45 FS,SI20MKA6-63 FS","SI20MKA7-42,SI20MKA7-89,SI20UBX5B45,SI20MKA6-63","SI20MKQ8-25 FS,SI20BZK7D10# FF,SI20BZK7D10# FS","SI20MKQ8-25,SI20BZK7D10#,SI20BZK7D10#",109,,111,,25,,26,,80,1856,"HK1003 -Blackpoint D2 - Rev.0E DD30092021"
1-2029,SI--BBA2-80,"QUOTATION STAGE MV SWITCHGEAR 20/90BBA/BBB",5121,"HK1003-Rev.0E-3",TT_Task,"55902",-,-,-,100,TK_Complete,01/05/2021,01/05/2021,13/08/2021,13/08/2021,"SI--BBA2-75 FS","SI--BBA2-75","SI--BBA2-85 FS","SI--BBA2-85",39,39,53,53,9,9,12,12,10,,"HK1003 -Blackpoint D2 - Rev.0E DD30092021"
1-2030,SI20EK-8-97,"INSPECTIONS EK SYSTEM WITH NOTIFIED BODY",5121,"HK1003-Rev.0E-3",TT_Mile,"55902",-,-,-,0,TK_NotStart,24/05/2023,,24/05/2023,,"SI20EK-8-10 SS,SI-P222-63 SS","SI20EK-8-10,SI-P222-63","SI20MB-9-05 SS,SI20EK-8-25 FS","SI20MB-9-05,SI20EK-8-25",146,,146,,34,,34,,97,8,"HK1003 -Blackpoint D2 - Rev.0E DD30092021"
1-2031,SI20SGJ8-21,"COLD COMMISSIONING FF CO2 SYSTEM FOR 20MPB NOISE ENCLOSURE SGJ",5121,"HK1003-Rev.0E-3",TT_Task,"55902",-,-,-,0,TK_NotStart,09/06/2023,,22/06/2023,,"SI20SAM8-26 FS,SI20SGJ8-20 FS,SI20BF-8-25 SS,SI20BZK7F26 FS,SI20MPB7E81 FS,SI20BZK7L25 FS,SI-PM-40 FS,SI-P222-66 FS,SI-P222-76 FS,SI-P222-75 FS,SI-P222-74 FS,SI-P222-73 FS,SI-P222-72 FS,SI-P222-70 FS","SI20SAM8-26,SI20SGJ8-20,SI20BF-8-25,SI20BZK7F26,SI20MPB7E81,SI20BZK7L25,SI-PM-40,SI-P222-66,SI-P222-76,SI-P222-75,SI-P222-74,SI-P222-73,SI-P222-72,SI-P222-70","SI20MB-9-05 FS","SI20MB-9-05",148,,150,,34,,35,,98,8,"HK1003 -Blackpoint D2 - Rev.0E DD30092021"
1-2032,SI--M--2D20,"(DF) SYSTEM DOCUMENTS [external interfaces final]",5121,"HK1003-Rev.0E-3",TT_FinMile,"55902",-,-,-,100,TK_Complete,07/05/2021,07/05/2021,07/05/2021,07/05/2021,"SP20MBL2-10 SS,SP20MBR2-05 SS,SP20MBL2-05 SS,SP20MBR2-10 SS,SP--MPB2-05 SS,SI--M--2D00 SS,SP--MPB2-10 SS,SI-----1-04 SS,SP--SGJ2-10 SS,SI--M--2C00 FS","SP20MBL2-10,SP20MBR2-05,SP20MBL2-05,SP20MBR2-10,SP--MPB2-05,SI--M--2D00,SP--MPB2-10,SI-----1-04,SP--SGJ2-10,SI--M--2C00","SP20CJP2-70 FS","SP20CJP2-70",39,39,39,39,9,9,9,9,11,,"HK1003 -Blackpoint D2 - Rev.0E DD30092021"
1-2033,SI--B--2-68,"80% CABLE PULLING DATA TRANSFER TO SITE",5121,"HK1003-Rev.0E-3",TT_Mile,"55902",-,-,-,0,TK_NotStart,20/12/2021,,20/12/2021,,"SI--B--2-67 SS,SI--B--2-30 FS,SI--BZK2-81 FS","SI--B--2-67,SI--B--2-30,SI--BZK2-81","SI20CFE7A25 FS,SI20BZK7B32 FS,SI20BZK7F25 FS,SI20BZK7B24 FS,SI20BZK7-25 SS,SI20BZK7B27 SS,SI20UBA7-25 SS,SI20BZK7C33 SS,SI20UBA7-104 SS,SI20BZK7D25 SS,SI20BZK7F26 FS,SI20BZK7A25 FS,SI20CHA8-10 FS,SI20BAW5A15 FS,SI20BZK7L25 FS,SI20CPC8-10 FS,SI20CPD8-11 FS,SI20SGJ6A15 FS,SI20MBA8-10 FS,SI20SGC6J15 FS,SI20UBA8-12 FS,SI20BZK7E25 SS,SI20UBA8-11 FS,SI20BZK7A26 FS,SI20BZK7C25 FS,SI20CJ-8-10 FS,SI20UMC5D50 FS,SI20BFA8-10 FS,SI20BFC8-10 FS,SI20BZK7-28 FS,SI--B--7-55 FS,SI20UBA7-17 FS,SI20BBA8-10 FS,SI20BZK7A27 FS,SI20BZK7B26 FS,SI--BRU8-22 FS,SI20CR-8-10 FS,SI--2226-55 FS,SI--2222-35 FS,SI20CPB8-25 FS,SI20MKA8-10 FS,SI20MKC8-75 FS,SI20MKC8-76 FS,SI--B--2-93 FS","SI20CFE7A25,SI20BZK7B32,SI20BZK7F25,SI20BZK7B24,SI20BZK7-25,SI20BZK7B27,SI20UBA7-25,SI20BZK7C33,SI20UBA7-104,SI20BZK7D25,SI20BZK7F26,SI20BZK7A25,SI20CHA8-10,SI20BAW5A15,SI20BZK7L25,SI20CPC8-10,SI20CPD8-11,SI20SGJ6A15,SI20MBA8-10,SI20SGC6J15,SI20UBA8-12,SI20BZK7E25,SI20UBA8-11,SI20BZK7A26,SI20BZK7C25,SI20CJ-8-10,SI20UMC5D50,SI20BFA8-10,SI20BFC8-10,SI20BZK7-28,SI--B--7-55,SI20UBA7-17,SI20BBA8-10,SI20BZK7A27,SI20BZK7B26,SI--BRU8-22,SI20CR-8-10,SI--2226-55,SI--2222-35,SI20CPB8-25,SI20MKA8-10,SI20MKC8-75,SI20MKC8-76,SI--B--2-93",72,,72,,16,,16,,43,696,"HK1003 -Blackpoint D2 - Rev.0E DD30092021"
1-2034,SI20PGB6H15,"ERECTION, NDT, PT PIPES / VALVES 20PGB",5121,"HK1003-Rev.0E-3",TT_Task,"55902",-,-,-,0,TK_NotStart,31/07/2022,,08/10/2022,,"SI20PGB6M40 FS,SI20PCC6B16 FS,SI20UMC5E54 FS,SI20UMC5E50 FS,SI---5P6A09 FS","SI20PGB6M40,SI20PCC6B16,SI20UMC5E54,SI20UMC5E50,SI---5P6A09","SI20PAH8-25 FS,SI20PGB8-10 FS,SI20-6-16# FF,SI20-6-16# SS,SI20PCB8M10 FS,SI20PCB8M25 FS","SI20PAH8-25,SI20PGB8-10,SI20-6-16#,SI20-6-16#,SI20PCB8M10,SI20PCB8M25",104,,114,,24,,26,,76,1544,"HK1003 -Blackpoint D2 - Rev.0E DD30092021"
1-2035,SI20PGB6H17,"INSULATION NDT, PT PIPES / VALVES 20PGB",5121,"HK1003-Rev.0E-3",TT_Task,"55902",-,-,-,0,TK_NotStart,16/02/2023,,08/03/2023,,"SI20MKA6-20 FS,SI20UMC6M40 FF,SI20MKA6-40 FS,SI20LAC6B40 FF,SI20--P6A00& SS,SI--P--2-50 FS,SI20UMC5C45 FS,SI20LCB6B10 FS,SI20QU-6-40 FS,SI20MKA6E40 FS,SI20PGB6M40 FS,SI20MAJ6-15 FS,SI20UMC5C55 FS,SI---5P6A09 FS","SI20MKA6-20,SI20UMC6M40,SI20MKA6-40,SI20LAC6B40,SI20--P6A00&,SI--P--2-50,SI20UMC5C45,SI20LCB6B10,SI20QU-6-40,SI20MKA6E40,SI20PGB6M40,SI20MAJ6-15,SI20UMC5C55,SI---5P6A09","SI20PAH8-25 FS,SI20PGB7H15 FF,SI20PGB8-10 FS,SI20MKA8-10 FS,SI20-6-16# FF,SI20-6-16# SS,SI20PCB8M10 FS,SI20PCB8M25 FS","SI20PAH8-25,SI20PGB7H15,SI20PGB8-10,SI20MKA8-10,SI20-6-16#,SI20-6-16#,SI20PCB8M10,SI20PCB8M25",132,,135,,30,,31,,91,336,"HK1003 -Blackpoint D2 - Rev.0E DD30092021"
1-2036,SI--ZTA2-80,"QUOTATION STAGE CHEMICAL CLEANING",5121,"HK1003-Rev.0E-3",TT_Task,"55902",-,-,-,0,TK_NotStart,18/06/2022,,12/08/2022,,"SI--ZTA2-75 FS","SI--ZTA2-75","SI--ZTA2-85 FS","SI--ZTA2-85",98,,105,,22,,24,,70,224,"HK1003 -Blackpoint D2 - Rev.0E DD30092021"
1-2037,SI--ZTA2-75,"PREPARATION RFQ CHEMICAL CLEANING",5121,"HK1003-Rev.0E-3",TT_Task,"55902",-,-,-,0,TK_NotStart,21/05/2022,,17/06/2022,,"SI--3331-32 SS,SI--HA-2-70 FS","SI--3331-32,SI--HA-2-70","SI--ZTA2-80 FS","SI--ZTA2-80",94,,97,,21,,22,,66,224,"HK1003 -Blackpoint D2 - Rev.0E DD30092021"
1-2038,SI--L--2-70,"(DF) I&C DATA L SYSTEMS",5121,"HK1003-Rev.0E-3",TT_FinMile,"55902",-,-,-,100,TK_Complete,06/07/2021,06/07/2021,06/07/2021,06/07/2021,"SI--L--2-28 FS,SI20CJF2-82 FS,SI--HA-2-70 FS,SI--L--2-65 FS","SI--L--2-28,SI20CJF2-82,SI--HA-2-70,SI--L--2-65","SI--C--2C55 FS","SI--C--2C55",48,48,48,48,11,11,11,11,21,,"HK1003 -Blackpoint D2 - Rev.0E DD30092021"
1-2039,SI--G--2I35,"DESIGN DATA SHEETS SAFETY / CONTROL VALVES G-/S- SYSTEMS",5121,"HK1003-Rev.0E-3",TT_Mile,"55902",-,-,-,0,TK_NotStart,02/10/2021,,02/10/2021,,"SI--GM-2B87 FS,SI--G--2-75 FS,SI--G--2-35 FS,SI--G--2I45 FS","SI--GM-2B87,SI--G--2-75,SI--G--2-35,SI--G--2I45","SI--PM-2-60 FS,SI--G--2-87 FS","SI--PM-2-60,SI--G--2-87",61,,61,,14,,14,,31,1144,"HK1003 -Blackpoint D2 - Rev.0E DD30092021"
1-2040,SI--G--2-80,"(DF) I&C DATA G-/S- SYSTEMS",5121,"HK1003-Rev.0E-3",TT_FinMile,"55902",-,-,-,100,TK_Complete,04/09/2021,04/09/2021,04/09/2021,04/09/2021,"SI--G--2-85 FS","SI--G--2-85","SI--C--2-50 FS,SI--G--2-88 FS","SI--C--2-50,SI--G--2-88",57,57,57,57,13,13,13,13,28,,"HK1003 -Blackpoint D2 - Rev.0E DD30092021"
1-2041,SI--CYA8-10,"(TOP-20CY) COMMUNICATION SYSTEMS",5121,"HK1003-Rev.0E-3",TT_FinMile,"55902",-,-,-,0,TK_NotStart,26/05/2023,,26/05/2023,,"SI20CY-7-15 FS,SI--CYA7A15 FS,SI--9998-20& SS","SI20CY-7-15,SI--CYA7A15,SI--9998-20&","SI--CYA8-25 FS","SI--CYA8-25",146,,146,,34,,34,,97,112,"HK1003 -Blackpoint D2 - Rev.0E DD30092021"
1-2042,SI--ZTA2A00,"FIX CHEMICAL CLEANING CONCEPT",5121,"HK1003-Rev.0E-3",TT_Mile,"55902",-,-,-,100,TK_Complete,18/03/2021,18/03/2021,18/03/2021,18/03/2021,"SI-----1-03 SS,SI-----1-05 FS","SI-----1-03,SI-----1-05","SI--ZTA2A75 FS,SI--ZTB2A75 FS","SI--ZTA2A75,SI--ZTB2A75",32,32,32,32,7,7,7,7,6,,"HK1003 -Blackpoint D2 - Rev.0E DD30092021"
1-2043,SI--ZTA4A25,"TRANSPORT EQUIPMENT/ MOBILIZATION CHEMICAL CLEANING SYSTEM ZTA",5121,"HK1003-Rev.0E-3",TT_Task,"55902",-,-,-,0,TK_NotStart,21/01/2023,,17/03/2023,,"SI--ZTA3B80 FS","SI--ZTA3B80","SI--ZTA4A40 FS","SI--ZTA4A40",129,,136,,30,,31,,89,0,"HK1003 -Blackpoint D2 - Rev.0E DD30092021"
1-2044,SI--ZTA3A25,"DESIGN, PROC. TEMP. PIPING / VALVES FOR CHEMICAL CLEANING SYSTEM ZTA",5121,"HK1003-Rev.0E-3",TT_Task,"55902",-,-,-,0,TK_NotStart,13/08/2022,,12/12/2022,,"SI--ZTA2A85 FS","SI--ZTA2A85","SI--ZTA3B70 FS,SI--ZTA2A20 SS","SI--ZTA3B70,SI--ZTA2A20",106,,123,,24,,28,,77,88,"HK1003 -Blackpoint D2 - Rev.0E DD30092021"
1-2045,SI--ZTA2A20,"(DF) MATERIAL TAKE OFF FOR TEMPORARY PIPING AND VALVES",5121,"HK1003-Rev.0E-3",TT_FinMile,"55902",-,-,-,0,TK_NotStart,16/09/2022,,16/09/2022,,"SI--ZTA3A25 SS,SI--ZTB2A20 SS","SI--ZTA3A25,SI--ZTB2A20","SI--ZTA2-35 SS","SI--ZTA2-35",110,,110,,25,,25,,81,672,"HK1003 -Blackpoint D2 - Rev.0E DD30092021"
1-2046,SI--ZTA2A85,"CONTRACT INTO FORCE CHEMICAL CLEANING PIPING",5121,"HK1003-Rev.0E-3",TT_Mile,"55902",-,-,-,0,TK_NotStart,13/08/2022,,13/08/2022,,"SI--ZTA2A80 FS","SI--ZTA2A80","SI--ZTA3A25 FS","SI--ZTA3A25",106,,106,,24,,24,,77,88,"HK1003 -Blackpoint D2 - Rev.0E DD30092021"
1-2047,SI20LBH8D25,"COLD COMMISSIONING BLOW DOWN TANK (FOR CHEM. CLEANING) 20LBH",5121,"HK1003-Rev.0E-3",TT_Task,"55902",-,-,-,0,TK_NotStart,18/04/2023,,24/04/2023,,"SI20BF-8-25 SS,SI20LBH8D10 FS,SI20CPC8-27 FS,SI-PM-40 FS","SI20BF-8-25,SI20LBH8D10,SI20CPC8-27,SI-PM-40","SI20--P6-75 FS","SI20--P6-75",141,,142,,33,,33,,95,144,"HK1003 -Blackpoint D2 - Rev.0E DD30092021"
1-2048,SI--SMM2-80,"QUOTATION STAGE CRANES 20SMM01/02 FOR 20UMC",5121,"HK1003-Rev.0E-3",TT_Task,"55902",-,-,-,100,TK_Complete,02/02/2021,02/02/2021,29/03/2021,29/03/2021,"SI--SMM2-75 FS,SI--SMM2-20 FS","SI--SMM2-75,SI--SMM2-20","SI--SMM2-85 FS","SI--SMM2-85",26,26,34,34,6,6,8,8,4,,"HK1003 -Blackpoint D2 - Rev.0E DD30092021"
1-2049,SI20GHC8H16,"COMMISSIONING PIPES / VALVES DEMIN WATER 00GHC",5121,"HK1003-Rev.0E-3",TT_Task,"55902",-,-,-,0,TK_NotStart,07/04/2023,,21/04/2023,,"SI20GHC8H25 FS,SI-PM-40 FS,SI20B--8-52 FS,SI20UMY6M70 SS","SI20GHC8H25,SI-PM-40,SI20B--8-52,SI20UMY6M70","SI20--P6-75 FS","SI20--P6-75",139,,141,,32,,33,,94,168,"HK1003 -Blackpoint D2 - Rev.0E DD30092021"
1-2050,SI20SMG2-80,"QUOTATION STAGE  OTHER CRANES AND HOIST",5121,"HK1003-Rev.0E-3",TT_Task,"55902",-,-,-,0,TK_NotStart,30/09/2021,,10/11/2021,,"SI20SMG2-75 FS","SI20SMG2-75","SI20SMG2-85 FS","SI20SMG2-85",60,,66,,14,,15,,30,2424,"HK1003 -Blackpoint D2 - Rev.0E DD30092021"
1-2051,SI20UBA8G25,"ELECTRICAL COMMISSIONING 20UBA7910/20",5121,"HK1003-Rev.0E-3",TT_Task,"55902",-,-,-,0,TK_NotStart,14/03/2023,,27/03/2023,,"SI--2222-35 FS,SI20SGM8-40 SS,SI20SGC8-30 SS,SI20UBA8-12 FS,SI20BFG8-50 FS,SI20BBT8-25 SS","SI--2222-35,SI20SGM8-40,SI20SGC8-30,SI20UBA8-12,SI20BFG8-50,SI20BBT8-25","SI20CJT8A20 SS","SI20CJT8A20",136,,138,,31,,32,,92,128,"HK1003 -Blackpoint D2 - Rev.0E DD30092021"
1-2052,SI20CH-8A25,"COMMISSIONING ELECTRICAL INTERFACE GRID/PLANT (GT20)",5121,"HK1003-Rev.0E-3",TT_Task,"55902",-,-,-,0,TK_NotStart,28/03/2023,,10/04/2023,,"SI20BFA8-25 FS,SI20CPD8-36 FS,SI20TP-230& FS,SI20BAT8-25 FS,SI20CHA8-25 FS,SI20SGC8-75 FS,SI-PM-40 FS,SI20BAC8-26 FS,SI20CPD8-37 FS,SI20BBT8-25 FS","SI20BFA8-25,SI20CPD8-36,SI20TP-230&,SI20BAT8-25,SI20CHA8-25,SI20SGC8-75,SI-PM-40,SI20BAC8-26,SI20CPD8-37,SI20BBT8-25","SI20CH-8-25 FF,SI20B--8-50 FS","SI20CH-8-25,SI20B--8-50",138,,140,,32,,32,,93,16,"HK1003 -Blackpoint D2 - Rev.0E DD30092021"
1-2053,SI20GM-6B40,"(RFP) READY FOR PIPE CONNECTION SUMP PUMP GM UBF",5121,"HK1003-Rev.0E-3",TT_FinMile,"55902",-,-,-,0,TK_NotStart,02/07/2022,,02/07/2022,,"SI20GM-6B15 SS","SI20GM-6B15","SI20GM-6H19 FS","SI20GM-6H19",100,,100,,23,,23,,72,2000,"HK1003 -Blackpoint D2 - Rev.0E DD30092021"
1-2054,SI20GM-6B15,"M-ERECTION SUMP PUMPS GM FOR UBF",5121,"HK1003-Rev.0E-3",TT_Task,"55902",-,-,-,0,TK_NotStart,26/06/2022,,09/07/2022,,"SI--GM-4B40 FS,SI20UGU5-81 FS,SI20BBT2-47 FS,SI20BBT2-47 SS","SI--GM-4B40,SI20UGU5-81,SI20BBT2-47,SI20BBT2-47","SI20GM-6B40 SS,SI20GM-7E15 FS,SI20GM-8B10 FS,SI20BAT7-15 FS","SI20GM-6B40,SI20GM-7E15,SI20GM-8B10,SI20BAT7-15",99,,101,,23,,23,,71,480,"HK1003 -Blackpoint D2 - Rev.0E DD30092021"
1-2055,SI20GM-6E15,"M-ERECTION SUMP PUMPS/OIL SEPARATOR GM FOR 20UBH01/03",5121,"HK1003-Rev.0E-3",TT_Task,"55902",-,-,-,0,TK_NotStart,11/07/2022,,24/07/2022,,"SI--GM-4B40 FS,SI20UBH5E48 FS,SI20UBH5E48 FF,SI20UMC5C55 FS","SI--GM-4B40,SI20UBH5E48,SI20UBH5E48,SI20UMC5C55","SI20GM-8E10 FS,SI20GM-6H15 FS,SI20GM-7-15 FS,SI20GM-6E40 SS","SI20GM-8E10,SI20GM-6H15,SI20GM-7-15,SI20GM-6E40",101,,103,,23,,24,,73,696,"HK1003 -Blackpoint D2 - Rev.0E DD30092021"
1-2056,SI20GM-6E40,"(RFP) READY FOR PIPE CONNECTION SUMP PUMP GM FOR 20UBH01/03",5121,"HK1003-Rev.0E-3",TT_FinMile,"55902",-,-,-,0,TK_NotStart,17/07/2022,,17/07/2022,,"SI20GM-6E15 SS","SI20GM-6E15","SI20GM-6H18 FS,SI20GM-6H16 FS,SI20GM-6H19 FS","SI20GM-6H18,SI20GM-6H16,SI20GM-6H19",102,,102,,23,,23,,74,1880,"HK1003 -Blackpoint D2 - Rev.0E DD30092021"
1-2057,SI20GM-8E25,"COLD COMMISSIONING PLANT DRAINAGE SYSTEM GM",5121,"HK1003-Rev.0E-3",TT_Task,"55902",-,-,-,0,TK_NotStart,22/04/2023,,28/04/2023,,"SI20GM-8B27 FS,SI20GM-8E10 FS,SI20UBH8-27 FS,SI20BFA8-35 SS,SI-PM-40 FS,SI20TPM25A8-30 FS,SI20TPC1A8-30 FS,SI20TPC2A8-30 FS,SI20TPC3A8-30 FS,SI20TPC4A8-30 FS,SI20TPC5A8-30 FS,SI20TPC6A8-30 FS,SI20TPC7A8-30 FS,SI20TPC8A8-30 FS,SI20TPC9A8-30 FS,SI20TPC10A8-30 FS,SI20TPM20A8-30 FS,SI20TPM21A8-30 FS,SI20TPM22A8-30 FS,SI20TPM23A8-30 FS,SI20TPM24A8-30 FS,SI20UVM-8E27 FS,SI20BFA8-25 FS","SI20GM-8B27,SI20GM-8E10,SI20UBH8-27,SI20BFA8-35,SI-PM-40,SI20TPM25A8-30,SI20TPC1A8-30,SI20TPC2A8-30,SI20TPC3A8-30,SI20TPC4A8-30,SI20TPC5A8-30,SI20TPC6A8-30,SI20TPC7A8-30,SI20TPC8A8-30,SI20TPC9A8-30,SI20TPC10A8-30,SI20TPM20A8-30,SI20TPM21A8-30,SI20TPM22A8-30,SI20TPM23A8-30,SI20TPM24A8-30,SI20UVM-8E27,SI20BFA8-25","SI20LCA8M25 FS,SI20GKB8H25 FS","SI20LCA8M25,SI20GKB8H25",142,,142,,33,,33,,96,48,"HK1003 -Blackpoint D2 - Rev.0E DD30092021"
1-2058,SI--UEN2-60,"(MS3) CONCRETE STRUCTURE FINAL DIMENSIONS, LOADS AVAILABLE 20UEN",5121,"HK1003-Rev.0E-3",TT_FinMile,"55902",-,-,-,100,TK_Complete,11/07/2021,11/07/2021,11/07/2021,11/07/2021,"SI--EK-2C60 FS","SI--EK-2C60","SI20UEN2-71 FS,SI20UEN2D70 FS,SI20UEN2-70 FS,SI--UEN2-50 FS,SI20UEN2-5 FS","SI20UEN2-71,SI20UEN2D70,SI20UEN2-70,SI--UEN2-50,SI20UEN2-5",49,49,49,49,11,11,11,11,21,,"HK1003 -Blackpoint D2 - Rev.0E DD30092021"
1-2059,SI--BZK2-15,"BASIC DESIGN / SPECIFICATION MV/LV CABLES BZK",5121,"HK1003-Rev.0E-3",TT_Task,"55902",-,-,-,100,TK_Complete,27/07/2021,27/07/2021,23/08/2021,23/08/2021,"SI--3331-32 FS,SI--3332-26 FS,SI-----1-03 SS,SI--B--2-44 FS,SI--BZK2-81 FS","SI--3331-32,SI--3332-26,SI-----1-03,SI--B--2-44,SI--BZK2-81","SI--BZK2-86 FS,SI--B--2-65 FS","SI--BZK2-86,SI--B--2-65",51,51,55,55,12,12,12,12,23,,"HK1003 -Blackpoint D2 - Rev.0E DD30092021"
1-2060,SI--CKA2-04,"APPLICATION SERVER READY FOR INTEGRATION IN ELECTRICAL MODULES",5121,"HK1003-Rev.0E-3",TT_FinMile,"55902",-,-,-,0,TK_NotStart,24/02/2022,,24/02/2022,,"SI--CKA2-19 FS,SI--CKA2-18 FS,SI--CKA2-00 FS","SI--CKA2-19,SI--CKA2-18,SI--CKA2-00","SP20UBA3H55 FS","SP20UBA3H55",81,,81,,19,,19,,50,584,"HK1003 -Blackpoint D2 - Rev.0E DD30092021"
1-2061,SI20HB-4F40,"(OTD-OS) ON SITE OUTLET DUCT HRSG 20",5121,"HK1003-Rev.0E-3",TT_FinMile,"55902",-,-,-,0,TK_NotStart,14/03/2022,,14/03/2022,,"SI20HB-4F25 FS","SI20HB-4F25","SI20HB-6-85 FS,SI20HB-6-46 FS","SI20HB-6-85,SI20HB-6-46",84,,84,,19,,19,,52,3000,"HK1003 -Blackpoint D2 - Rev.0E DD30092021"
1-2062,SI20MAD8-26&,"START COLD COMMISSIONING ST 20",5121,"HK1003-Rev.0E-3",TT_Mile,"55902",-,-,-,0,TK_NotStart,11/04/2023,,11/04/2023,,"SI20MA-8-25& SS,SI20SGY7A29 FS","SI20MA-8-25&,SI20SGY7A29","SI20MA-8-10 FS,SI20MAD8-10 FS,SI20MAG8-10 FS,SI20MAJ8-10 FS,SI20MAL8-10 FS,SI20MAN8-10 FS,SI20MAV8-10 FS,SI20MAW8-10 FS,SI20MAX8-10 FS,SI20QFB8-10 FS,SI20SGC8E10 FS,SI20MA-8B25 FS","SI20MA-8-10,SI20MAD8-10,SI20MAG8-10,SI20MAJ8-10,SI20MAL8-10,SI20MAN8-10,SI20MAV8-10,SI20MAW8-10,SI20MAX8-10,SI20QFB8-10,SI20SGC8E10,SI20MA-8B25",140,,140,,32,,32,,94,32,"HK1003 -Blackpoint D2 - Rev.0E DD30092021"
1-2063,SI20HA-4C40,"(OTD-OS) ON SITE VALVES > 2"" HRSG20",5121,"HK1003-Rev.0E-3",TT_FinMile,"55902",-,-,-,0,TK_NotStart,18/03/2022,,18/03/2022,,"SI20HA-4C25 FS","SI20HA-4C25","SI20HB-6-14 FF,SI20HB-6-20 FF","SI20HB-6-14,SI20HB-6-20",84,,84,,19,,19,,53,880,"HK1003 -Blackpoint D2 - Rev.0E DD30092021"
1-2064,SI20HA-3C80,"(RFS) READY FOR SHIPMENT VALVES HRSG20",5121,"HK1003-Rev.0E-3",TT_FinMile,"55902",-,-,-,0,TK_NotStart,16/02/2022,,16/02/2022,,"SI20HA-4B15 FS","SI20HA-4B15","SI20HA-4C25 FS","SI20HA-4C25",80,,80,,18,,18,,50,880,"HK1003 -Blackpoint D2 - Rev.0E DD30092021"
1-2065,SI20HA-4C25,"TRANSPORT VALVES > 2"" HRSG20",5121,"HK1003-Rev.0E-3",TT_Task,"55902",-,-,-,0,TK_NotStart,17/02/2022,,18/03/2022,,"SI20HA-3C80 FS","SI20HA-3C80","SI20HA-4C40 FS","SI20HA-4C40",80,,84,,18,,19,,50,880,"HK1003 -Blackpoint D2 - Rev.0E DD30092021"
1-2066,SI20MAG6-58,"FINAL INSPECTION MAG20",5121,"HK1003-Rev.0E-3",TT_Task,"55902",-,-,-,0,TK_NotStart,07/10/2022,,09/10/2022,,"SI20MAG6-56 FS","SI20MAG6-56","SI20MAG6-59 FS,SI20MAG6-20# FF","SI20MAG6-59,SI20MAG6-20#",113,,114,,26,,26,,82,1160,"HK1003 -Blackpoint D2 - Rev.0E DD30092021"
1-2067,SI20MAG6-56,"FINAL WORKS AND CLEANING MAG20",5121,"HK1003-Rev.0E-3",TT_Task,"55902",-,-,-,0,TK_NotStart,02/10/2022,,06/10/2022,,"SI20MAG6-42 FS,SI20MAG6-46 FS,SI20MAG6-52 FS","SI20MAG6-42,SI20MAG6-46,SI20MAG6-52","SI20MAG6-58 FS","SI20MAG6-58",113,,113,,26,,26,,82,1160,"HK1003 -Blackpoint D2 - Rev.0E DD30092021"
1-2068,SI20MAG6-46,"ASSEMBLING AND WELDING OF THE CONDENSER NECK STRUCTURE ON BYPASS STEAM REGION MAG20",5121,"HK1003-Rev.0E-3",TT_Task,"55902",-,-,-,0,TK_NotStart,16/08/2022,,25/08/2022,,"SI20MAN6-36 FS,SI20MA-6A11 FS","SI20MAN6-36,SI20MA-6A11","SI20MAG6-56 FS,SI20MAN6E40 FS,SI20MAG6-50 FS,SI20MA-6E41 FS,SI20MAG5-25 FS","SI20MAG6-56,SI20MAN6E40,SI20MAG6-50,SI20MA-6E41,SI20MAG5-25",106,,107,,24,,25,,77,184,"HK1003 -Blackpoint D2 - Rev.0E DD30092021"
1-2069,SI20MAG6-34,"VACUUM TEST WATER SIDE MAG20",5121,"HK1003-Rev.0E-3",TT_Task,"55902",-,-,-,0,TK_NotStart,10/07/2022,,16/07/2022,,"SI20MAG6-26 FS,SI20MAG6-33 FS","SI20MAG6-26,SI20MAG6-33","SI20MAG6-38 FS,SI20MAG6-30 FS,SI20PAB6A15 FS,SI20MAG6-40 FS,SI20MAG6-62 FS","SI20MAG6-38,SI20MAG6-30,SI20PAB6A15,SI20MAG6-40,SI20MAG6-62",101,,102,,23,,23,,73,184,"HK1003 -Blackpoint D2 - Rev.0E DD30092021"
1-2070,SI20MAG6-52,"WELDING OF CONDENSER TO LP TURBINE MAG20",5121,"HK1003-Rev.0E-3",TT_Task,"55902",-,-,-,0,TK_NotStart,16/09/2022,,01/10/2022,,"SI20MA-6B06 FS,SI20MAG6-50 FS","SI20MA-6B06,SI20MAG6-50","SI20MAG6-59 FF,SI20MAG6-56 FS,SI20MAG6-20# FF,SI20MAG5-25 FS","SI20MAG6-59,SI20MAG6-56,SI20MAG6-20#,SI20MAG5-25",110,,113,,25,,26,,81,1160,"HK1003 -Blackpoint D2 - Rev.0E DD30092021"
1-2071,SI20MAD6-71,"FINALISATION ERECTION N-TURBINE OUTER CASING ST 40",5121,"HK1003-Rev.0E-3",TT_FinMile,"55902",-,-,-,0,TK_NotStart,13/03/2023,,13/03/2023,,"SI20MAD6-70 FF","SI20MAD6-70","SI20MAD8-10 FS,SI20MA-6-66 FS","SI20MAD8-10,SI20MA-6-66",136,,136,,31,,31,,92,96,"HK1003 -Blackpoint D2 - Rev.0E DD30092021"
1-2072,SI20HA-6-50&,"START PRESSURE TEST HRSG20",5121,"HK1003-Rev.0E-3",TT_Mile,"55902",-,-,-,0,TK_NotStart,18/03/2023,,18/03/2023,,"SI20HA-6-15# FS","SI20HA-6-15#","SI20HA-6-56 SS,SI20HA-6-55 FS","SI20HA-6-56,SI20HA-6-55",137,,137,,31,,31,,93,0,"HK1003 -Blackpoint D2 - Rev.0E DD30092021"
1-2073,SI20BAT3-80,"(RFS) READY FOR SHIPMENT MAIN TRANSFORMERS 20BAT",5121,"HK1003-Rev.0E-3",TT_FinMile,"55902",-,-,-,0,TK_NotStart,13/07/2022,,13/07/2022,,"SI20BAT4B10 FS","SI20BAT4B10","SI20BAT2-05 FS,SI20BAT4-25 FS","SI20BAT2-05,SI20BAT4-25",101,,101,,23,,23,,73,152,"HK1003 -Blackpoint D2 - Rev.0E DD30092021"
1-2074,SI20BAT4-25,"TRANSPORT MAIN TRANSFORMERS 20BAT",5121,"HK1003-Rev.0E-3",TT_Task,"55902",-,-,-,0,TK_NotStart,14/07/2022,,12/08/2022,,"SI--LOG4-30 FS,SI20BAT3-80 FS","SI--LOG4-30,SI20BAT3-80","SI20BBT4-25 SS,SI20BAT4-10 FS,SI20BAT3-81 FS","SI20BBT4-25,SI20BAT4-10,SI20BAT3-81",101,,105,,23,,24,,73,152,"HK1003 -Blackpoint D2 - Rev.0E DD30092021"
1-2075,SI20QU-2-65,"(DF) INPUT FOR M2 SAMPLING CONTAINER 20QU",5121,"HK1003-Rev.0E-3",TT_FinMile,"55902",-,-,-,100,TK_Complete,06/08/2021,06/08/2021,06/08/2021,06/08/2021,"SI20QU-2-85 FS","SI20QU-2-85","SI---5P2A10 FS","SI---5P2A10",52,52,52,52,12,12,12,12,25,,"HK1003 -Blackpoint D2 - Rev.0E DD30092021"
1-2076,SI20MB-4-25,"TRANSFER / PREPARATION LIFT / SKID SYSTEM FOR GT20",5121,"HK1003-Rev.0E-3",TT_Task,"55902",-,-,-,0,TK_NotStart,23/07/2022,,29/07/2022,,"SI20MB-6-15& FS,SI20MB-6-00 FF","SI20MB-6-15&,SI20MB-6-00","SI20MB-6-10 FS","SI20MB-6-10",103,,103,,24,,24,,74,184,"HK1003 -Blackpoint D2 - Rev.0E DD30092021"
1-2077,SI20UBX2-20,"DETAIL DESIGN CONCRETE STRUCTURE 20UBX/20UBG03",5121,"HK1003-Rev.0E-3",TT_Task,"55902",-,-,-,22,TK_Active,20/09/2021,20/09/2021,03/11/2021,,"SI20UBX2-15 FS,SI20UBX2-10 FS,SI20UBX2-15 FF","SI20UBX2-15,SI20UBX2-10,SI20UBX2-15","SI--UBX2-50 FF,SI--UBX2A75 FS,SI20UBX2-25 FS","SI--UBX2-50,SI--UBX2A75,SI20UBX2-25",59,59,65,,13,13,15,,29,1400,"HK1003 -Blackpoint D2 - Rev.0E DD30092021"
1-2078,SI--UBX2-50,"PREPARATION FOUNDATION GROUNDING DWGS 20UBX/20UBG03",5121,"HK1003-Rev.0E-3",TT_Task,"55902",-,-,-,0,TK_NotStart,21/10/2021,,03/11/2021,,"SI20UBX2-20 FF,SI--BAW2-02 FS","SI20UBX2-20,SI--BAW2-02","SI--UBX2A75 FS,SI20UBX2-25 FS","SI--UBX2A75,SI20UBX2-25",63,,65,,14,,15,,35,1400,"HK1003 -Blackpoint D2 - Rev.0E DD30092021"
1-2079,SI--UBF2B75,"(F) DETAIL DESIGN STEEL STRUCTURE WITH CONTRACTOR UBF/UBE",5121,"HK1003-Rev.0E-3",TT_FinMile,"55902",-,-,-,0,TK_NotStart,31/12/2021,,31/12/2021,,"SI--UBF2B78 FS,SI--UBF2B70 FS,SI--UBF2-83 FS,SI20UBX2-81 FS","SI--UBF2B78,SI--UBF2B70,SI--UBF2-83,SI20UBX2-81","SI20UBD5-05 FS,SI20UBF3B25 FS","SI20UBD5-05,SI20UBF3B25",73,,73,,17,,17,,43,880,"HK1003 -Blackpoint D2 - Rev.0E DD30092021"
1-2080,SI--UBF2B70,"DETAIL DESIGN STEEL STRUCTURE UBF/UBE",5121,"HK1003-Rev.0E-3",TT_Task,"55902",-,-,-,100,TK_Complete,22/06/2021,22/06/2021,09/08/2021,09/08/2021,"SI--UBF2B60 FS,SI--UBF2-70 FF,SI--UBF2-90 FS","SI--UBF2B60,SI--UBF2-70,SI--UBF2-90","SI--BZP2-30 SS,SI--UBF2B75 FS,SI--UBF2-71 FS,SI--UBF2B78 FF,SI20UBX2-71 FS","SI--BZP2-30,SI--UBF2B75,SI--UBF2-71,SI--UBF2B78,SI20UBX2-71",46,46,53,53,10,10,12,12,18,,"HK1003 -Blackpoint D2 - Rev.0E DD30092021"
1-2081,SI--HA-2-81,"PROJECT SPECIFIC ADAPTION OF HRSG SPECIFICATION",5121,"HK1003-Rev.0E-3",TT_Task,"55902",-,-,-,100,TK_Complete,01/08/2020,01/08/2020,14/08/2020,14/08/2020,"SI--HA-2-79 FS,SI-----1-01 SS","SI--HA-2-79,SI-----1-01","SI--HA-2-99 FS,SI--HA-2-98 FS,SI--HA-2-82 FS,SI--HA-2-97 FS,SI--HA-2-96 FS,SI--3331-32 SS,SI--3331-34 FS,SI--2222-71 FS,SI--HA-2-11 FS,SI--HA-2-10 SS,SI20HA-3D26 FS,SI--HA-2-85 FS,SI--HA-2-86 FS,SI--HA-2-92 FS,SI--UHA2-60 FS,SI--HB-2D15 FS,SI--3331-33 SS,SI--HA-2A01 FS,SI--HA-2-14 FF,SI--HA-2-76 FF,SI--B--2-81 FF,SI--3331-36 FS,SI--B--2-04 FF,SI20HA-3C25 FS,SI20HA-3-15# FF,SI20HA-3-15# FS","SI--HA-2-99,SI--HA-2-98,SI--HA-2-82,SI--HA-2-97,SI--HA-2-96,SI--3331-32,SI--3331-34,SI--2222-71,SI--HA-2-11,SI--HA-2-10,SI20HA-3D26,SI--HA-2-85,SI--HA-2-86,SI--HA-2-92,SI--UHA2-60,SI--HB-2D15,SI--3331-33,SI--HA-2A01,SI--HA-2-14,SI--HA-2-76,SI--B--2-81,SI--3331-36,SI--B--2-04,SI20HA-3C25,SI20HA-3-15#,SI20HA-3-15#",0,0,1,1,0,0,0,0,0,,"HK1003 -Blackpoint D2 - Rev.0E DD30092021"
1-2082,SI--HB-2B60,"(DF) INPUT FOR MS3 HRSG",5121,"HK1003-Rev.0E-3",TT_FinMile,"55902",-,-,-,100,TK_Complete,26/02/2021,26/02/2021,26/02/2021,26/02/2021,"SI--HB-2A65 FS,SI--HA-2-85 FS","SI--HB-2A65,SI--HA-2-85","SI--UHA2-60 FF","SI--UHA2-60",29,29,29,29,6,6,6,6,5,,"HK1003 -Blackpoint D2 - Rev.0E DD30092021"
1-2083,SI--HB-2A05,"GENERAL ARRANGMENT DRAWINGS PRELIMINARY UHA",5121,"HK1003-Rev.0E-3",TT_Mile,"55902",-,-,-,100,TK_Complete,05/11/2020,05/11/2020,05/11/2020,05/11/2020,"SI-----1-03 SS","SI-----1-03","SI--HB-2-15 FS,SI--HB-2A65 FS","SI--HB-2-15,SI--HB-2A65",13,13,13,13,3,3,3,3,0,,"HK1003 -Blackpoint D2 - Rev.0E DD30092021"
1-2084,SI20GM-6H17,"ERECTION PIPES DRAINAGE SYSTEM 00GM FROM GAS TURBINE TO UBH01",5121,"HK1003-Rev.0E-3",TT_Task,"55902",-,-,-,0,TK_NotStart,29/10/2022,,09/12/2022,,"SI20UBH5E48 FS,SI---5P6A09 FS,SI--G--2-50 FS,SI20MBA6D40 FS","SI20UBH5E48,SI---5P6A09,SI--G--2-50,SI20MBA6D40","SI20GM-8F10 FS,SI20-6-16# FF,SI20-6-16# SS","SI20GM-8F10,SI20-6-16#,SI20-6-16#",117,,122,,27,,28,,84,1056,"HK1003 -Blackpoint D2 - Rev.0E DD30092021"
1-2085,SI20GHD8A10,"(TOP-00GHD) SERVICE WATER DISTRIBUTION SYSTEM",5121,"HK1003-Rev.0E-3",TT_FinMile,"55902",-,-,-,0,TK_NotStart,22/04/2023,,22/04/2023,,"SI20GHD6I15 FS,SI20GHD7H15 FS,SI--9998-22& FS","SI20GHD6I15,SI20GHD7H15,SI--9998-22&","SI20GHD8A25 FS,SI20TPM6A8-30 FS,SI20TPM6B8-30 FS","SI20GHD8A25,SI20TPM6A8-30,SI20TPM6B8-30",142,,142,,33,,33,,96,64,"HK1003 -Blackpoint D2 - Rev.0E DD30092021"
1-2086,SI20MBR4-40,"(OTD-OS) ON SITE DIFFUSOR 20MBR",5121,"HK1003-Rev.0E-3",TT_FinMile,"55902",-,-,-,0,TK_NotStart,21/04/2022,,21/04/2022,,"SI20MBR4-25 FS","SI20MBR4-25","SI20MBR6-15 FS","SI20MBR6-15",89,,89,,20,,20,,58,632,"HK1003 -Blackpoint D2 - Rev.0E DD30092021"
1-2087,SI20---9-90&,"START RELIABILITY RUN",5121,"HK1003-Rev.0E-3",TT_Mile,"55902",-,-,-,0,TK_NotStart,17/12/2023,,17/12/2023,,"","","SI20M--9-85 FS","SI20M--9-85",176,,176,,41,,41,,99,0,"HK1003 -Blackpoint D2 - Rev.0E DD30092021"
1-2088,SI--HA-9-45&,"START STEAM BLOWING",5121,"HK1003-Rev.0E-3",TT_Mile,"55902",-,-,-,0,TK_NotStart,03/07/2023,,03/07/2023,,"","","SI20HA-9A45 SS,SI20HA-9A45& SS","SI20HA-9A45,SI20HA-9A45&",152,,152,,35,,35,,99,0,"HK1003 -Blackpoint D2 - Rev.0E DD30092021"
1-2089,SI20---9-75&,"START PERFORMANCE TEST COMBINED CYCLE POWER PLANT",5121,"HK1003-Rev.0E-3",TT_Mile,"55902",-,-,-,0,TK_NotStart,05/12/2023,,05/12/2023,,"","","SI20M--9-90 SS","SI20M--9-90",174,,174,,40,,40,,99,0,"HK1003 -Blackpoint D2 - Rev.0E DD30092021"
1-2090,SI20USX5-10,"WORK PREPARATION, EXCAVATION 20USX",5121,"HK1003-Rev.0E-3",TT_Task,"55902",-,-,-,0,TK_NotStart,11/07/2022,,15/07/2022,,"SI20UMY6M12 FS,SI20UMC5C45 FS,SI20UMY6M11 FS,SI20USX2-40 FS,SI20UMY6M10 FS,SI-----5-22 FS,SI20UMC5C55 FS,SI-----5-21& FS,SI-----5-20 FS,SI-P222-84 FS,SI20USX2-44 FS","SI20UMY6M12,SI20UMC5C45,SI20UMY6M11,SI20USX2-40,SI20UMY6M10,SI-----5-22,SI20UMC5C55,SI-----5-21&,SI-----5-20,SI-P222-84,SI20USX2-44","SI20USX5-20 FS,SI-P222-131# FF,SI-P222-131# SS","SI20USX5-20,SI-P222-131#,SI-P222-131#",101,,101,,23,,23,,73,1632,"HK1003 -Blackpoint D2 - Rev.0E DD30092021"
1-2091,SI20SGA6-15,"ERECTION FIRE FIGHTING INDOOR HYDRANTS SGA 20UMC",5121,"HK1003-Rev.0E-3",TT_Task,"55902",-,-,-,0,TK_NotStart,31/07/2022,,10/09/2022,,"SI20SGA4-40 FS,SI20UMC5E54 FS,SI20UMC5E50 FS,SI-P222-65 FS","SI20SGA4-40,SI20UMC5E54,SI20UMC5E50,SI-P222-65","SI--CYA7A15 FS,SI20SGY8A25 FS,SI-P222-66 FS,SI-P222-133 FS,SI-P222-173 FS,SI-P222-135 FS","SI--CYA7A15,SI20SGY8A25,SI-P222-66,SI-P222-133,SI-P222-173,SI-P222-135",104,,110,,24,,25,,76,720,"HK1003 -Blackpoint D2 - Rev.0E DD30092021"
1-2092,SI20PAR8-06,"(TOP-20PAR) COOLING TOWER MAKE UP WATER SYSTEM",5121,"HK1003-Rev.0E-3",TT_FinMile,"55902",-,-,-,0,TK_NotStart,20/04/2023,,20/04/2023,,"SI20PAR6A15 FS,SI20PAR7A16 FS,SI20PAA2-75 FS,SI--9998-23& FS,SI20PB-7A15 FS,SI20PUS7A15 FS,SI20PSB7A15 FS","SI20PAR6A15,SI20PAR7A16,SI20PAA2-75,SI--9998-23&,SI20PB-7A15,SI20PUS7A15,SI20PSB7A15","SI20PAB8-05 FS","SI20PAB8-05",141,,141,,33,,33,,95,56,"HK1003 -Blackpoint D2 - Rev.0E DD30092021"
1-2093,SI--URD2-60,"(MS3) CONCRETE STRUCTURE FINAL DIMENSIONS, LOADS AVAILABLE 20URD xx",5121,"HK1003-Rev.0E-3",TT_FinMile,"55902",-,-,-,100,TK_Complete,13/05/2021,13/05/2021,13/05/2021,13/05/2021,"SI20PAA2-62 FS,SI--PAC2B60 FS,SI--PAD2-89 FS,SI20PCC2B66 FS","SI20PAA2-62,SI--PAC2B60,SI--PAD2-89,SI20PCC2B66","SI--URD2-77 FF,SI--URD2-70 FS,SI20URD3-16 FS","SI--URD2-77,SI--URD2-70,SI20URD3-16",40,40,40,40,9,9,9,9,12,,"HK1003 -Blackpoint D2 - Rev.0E DD30092021"
1-2094,SI--URD2-70,"DETAIL DESIGN CONCRETE STRUCTURE 20URD xx",5121,"HK1003-Rev.0E-3",TT_Task,"55902",-,-,-,100,TK_Complete,30/05/2021,30/05/2021,13/07/2021,13/07/2021,"SI--URD2-77 FS,SI--URD2-60 FS,SI--URD2-74 FS,SI--UR-2-45 FS,SI--5552-85 FS","SI--URD2-77,SI--URD2-60,SI--URD2-74,SI--UR-2-45,SI--5552-85","SI--URD2-55 FF,SI--URD2-71 FS","SI--URD2-55,SI--URD2-71",43,43,49,49,10,10,11,11,15,,"HK1003 -Blackpoint D2 - Rev.0E DD30092021"
1-2095,SI--URA2-75,"ATKINS DD DETAIL DESIGN SUBSTRUCTURE-20URA/URD",5121,"HK1003-Rev.0E-3",TT_FinMile,"55902",-,-,-,100,TK_Complete,01/06/2021,01/06/2021,01/06/2021,01/06/2021,"SI20URA2B02 FS","SI20URA2B02","SI20URA2B03 FS","SI20URA2B03",43,43,43,43,10,10,10,10,15,,"HK1003 -Blackpoint D2 - Rev.0E DD30092021"
1-2096,SI20HA-6C22,"ERECTION AND LIFTING MODULE (INCLUDING ALIGNMENT) HRSG20",5121,"HK1003-Rev.0E-3",TT_Task,"55902",-,-,-,0,TK_NotStart,01/04/2022,,28/04/2022,,"SI20HA-6C25 FS,SI20HA-6C22& SS,SI20HA-4G45 FF,SI20HA-4G44 FF,SI20HA-4G43 FF,SI20HA-4G42 FS,SI20HA-4G41 FS","SI20HA-6C25,SI20HA-6C22&,SI20HA-4G45,SI20HA-4G44,SI20HA-4G43,SI20HA-4G42,SI20HA-4G41","SI20HB-6C23 FS,SI20HA-6A48 FS,SI20HA-6D17 FS,SI20LCL6B15 FS,SI20UEY6-80 FS,SI20HB-6C28 FS,SI20LCL6B41 FS,SI20HB-6-14 FS,SI20HB-6-13 SS,SI20UBA5-59 FS,SI20HA-6C26 FS,SI20HB-6-48 SS","SI20HB-6C23,SI20HA-6A48,SI20HA-6D17,SI20LCL6B15,SI20UEY6-80,SI20HB-6C28,SI20LCL6B41,SI20HB-6-14,SI20HB-6-13,SI20UBA5-59,SI20HA-6C26,SI20HB-6-48",86,,90,,20,,21,,55,0,"HK1003 -Blackpoint D2 - Rev.0E DD30092021"
1-2097,SI20HB-6C23,"REMAINING SECONDARY PLATFORMS LADDERS etc. HRSG20",5121,"HK1003-Rev.0E-3",TT_Task,"55902",-,-,-,0,TK_NotStart,22/07/2022,,13/10/2022,,"SI20HB-6-14 SS,SI20HB-6C28 FS,SI20HA-6C22 FS,SI20HB-4C40 FS,SI20HB-6C26 FS,SI20HB-6C29 FS","SI20HB-6-14,SI20HB-6C28,SI20HA-6C22,SI20HB-4C40,SI20HB-6C26,SI20HB-6C29","SI20HA-6-20 FS,SI20HB-8-12 FS,SI20UBA7C-31 FS","SI20HA-6-20,SI20HB-8-12,SI20UBA7C-31",102,,114,,24,,26,,74,216,"HK1003 -Blackpoint D2 - Rev.0E DD30092021"
1-2098,SI--UBA2-70,"DETAIL DESIGN CONCRETE STRUCTURE UBA7910/7920",5121,"HK1003-Rev.0E-3",TT_Task,"55902",-,-,-,100,TK_Complete,24/06/2021,24/06/2021,22/08/2021,22/08/2021,"SI--UBA2-81 FS,SI--UBA2-60 FS,SI--UBA2-111 FS","SI--UBA2-81,SI--UBA2-60,SI--UBA2-111","SI--UBA2-50 FF,SI--UBA2A75 FS,SI--UBA2-95 FS","SI--UBA2-50,SI--UBA2A75,SI--UBA2-95",46,46,55,55,10,10,12,12,19,,"HK1003 -Blackpoint D2 - Rev.0E DD30092021"
1-2099,SI20MBH8-10,"(TOP-20MBH) GT COOLING AIR SYSTEM",5121,"HK1003-Rev.0E-3",TT_FinMile,"55902",-,-,-,0,TK_NotStart,27/04/2023,,27/04/2023,,"SP20MB-4A40 FS,SI20MBA6F15 FS,SI20MBA6A15 FS,SI20MBA6-40 FS,SI20MBQ7H15 FS,SI20MB-7J15 FS,SI20MB-4A25 FS,SI20MBV6-55 FS,SI20MB-7H15 FS,SI20BZK7F26 FS,SI20MBX4-12 FS,SI20BZK7L25 FS,SI20MB-6A15 FS,SI20BZK7F26 FF,SI20MBA8-23& FS","SP20MB-4A40,SI20MBA6F15,SI20MBA6A15,SI20MBA6-40,SI20MBQ7H15,SI20MB-7J15,SI20MB-4A25,SI20MBV6-55,SI20MB-7H15,SI20BZK7F26,SI20MBX4-12,SI20BZK7L25,SI20MB-6A15,SI20BZK7F26,SI20MBA8-23&","SI20MBA8-10 FS,SI20MBH8-25 FS","SI20MBA8-10,SI20MBH8-25",142,,142,,33,,33,,96,8,"HK1003 -Blackpoint D2 - Rev.0E DD30092021"
1-2100,SI20UBF3B25,"FABRICATION DESIGN FABRICATION TRANSPORT STEEL STRUCTURE 20UBE/UBF",5121,"HK1003-Rev.0E-3",TT_Task,"55902",-,-,-,0,TK_NotStart,01/01/2022,,25/03/2022,,"SI--UBF2B75 FS","SI--UBF2B75","SI20UBF5B10 FS","SI20UBF5B10",74,,85,,17,,20,,44,880,"HK1003 -Blackpoint D2 - Rev.0E DD30092021"
1-2101,SI20UBA2-20,"PREPARATION FOUNDATION GROUNDING DWGS 20UBA1110/20",5121,"HK1003-Rev.0E-3",TT_Task,"55902",-,-,-,81,TK_Active,19/08/2021,19/08/2021,09/10/2021,,"SI20UBA2-15 FF,SI-----1-01 FS","SI20UBA2-15,SI-----1-01","SI20UBA2-40 FS,SI20UBA2-25 FS","SI20UBA2-40,SI20UBA2-25",54,54,62,,12,12,14,,26,256,"HK1003 -Blackpoint D2 - Rev.0E DD30092021"
1-2102,SP20MB-3-25,"DESIGN / PROCUREMENT / MANUFACTURING GAS TURBINE 20MB-",5121,"HK1003-Rev.0E-3",TT_Task,"55902",-,-,-,58,TK_Active,15/01/2021,15/01/2021,01/04/2022,,"SI--3331-35 FS,SP20MB-3-26 SS,SI-----1-04 SS,SP20MB-3-26 FS,SI-----1-05 FS,SI-----1-04 FS","SI--3331-35,SP20MB-3-26,SI-----1-04,SP20MB-3-26,SI-----1-05,SI-----1-04","SP--MB-3G75 FF,SP20MB-3F25 FF,SI20MB-3-70 FS,SP20MB-3D25 SS,SI-PM-25 FS,SP20MB-3D25 FF,SP20MB-3C25 FF,SP20MB-3A25 FF,SP20MB-3-251 FF,SP20MBK3-25 FF,SI20MBA3-84 FF,SP20MBL3-25 FF,SP20MBP3A81 FF,SP20MBX3A83 FF,SP20MPB3A94 FF","SP--MB-3G75,SP20MB-3F25,SI20MB-3-70,SP20MB-3D25,SI-PM-25,SP20MB-3D25,SP20MB-3C25,SP20MB-3A25,SP20MB-3-251,SP20MBK3-25,SI20MBA3-84,SP20MBL3-25,SP20MBP3A81,SP20MBX3A83,SP20MPB3A94",23,23,86,,5,5,20,,2,184,"HK1003 -Blackpoint D2 - Rev.0E DD30092021"
1-2103,SP20MB-3-80,"(RFS) READY FOR SHIPMENT (NORTH SEA PORT) GAS TURBINE 20MB-",5121,"HK1003-Rev.0E-3",TT_FinMile,"55902",-,-,-,0,TK_NotStart,29/04/2022,,29/04/2022,,"SI20MB-4-10 FS","SI20MB-4-10","SI20MBA4-26 FS","SI20MBA4-26",90,,90,,21,,21,,60,184,"HK1003 -Blackpoint D2 - Rev.0E DD30092021"
1-2104,SP20MA-3C81,"DELIVERY ST LP OUTER CASING MA-",5121,"HK1003-Rev.0E-3",TT_FinMile,"55902",-,-,-,0,TK_NotStart,15/04/2022,,15/04/2022,,"SP20MAG3-25 FS,SP20MA-3-25 FS,SP20MA-3-92 FS","SP20MAG3-25,SP20MA-3-25,SP20MA-3-92","SP20MA-3-71 FS","SP20MA-3-71",88,,88,,20,,20,,58,8,"HK1003 -Blackpoint D2 - Rev.0E DD30092021"
1-2105,SI20BAW5A16,"ERECTION OUTDOOR EARTHING 20UBF AREA",5121,"HK1003-Rev.0E-3",TT_Task,"55902",-,-,-,0,TK_NotStart,15/11/2022,,23/01/2023,,"SI--BAW2-05 FS,SI--BAW4-40 FS,SI20UBA5-15 FS,SI20UBF5E45 FS,SI20BAA7-15 FS","SI--BAW2-05,SI--BAW4-40,SI20UBA5-15,SI20UBF5E45,SI20BAA7-15","SI20BAW5-15# SS,SI--BAW8-10 FS,SI20BAW5-15# FF,SI--BAW8A10 FS","SI20BAW5-15#,SI--BAW8-10,SI20BAW5-15#,SI--BAW8A10",119,,129,,27,,30,,85,576,"HK1003 -Blackpoint D2 - Rev.0E DD30092021"
1-2106,SI--BAW3-25,"MANUFACTURING / SHOP TEST IN- / OUTDOOR GROUNDING BAW",5121,"HK1003-Rev.0E-3",TT_Task,"55902",-,-,-,0,TK_NotStart,12/01/2022,,08/03/2022,,"SI--BAW2-85 FS,SI--2222-30 FS","SI--BAW2-85,SI--2222-30","SI--BAW3-70 FS","SI--BAW3-70",75,,83,,17,,19,,45,1560,"HK1003 -Blackpoint D2 - Rev.0E DD30092021"
1-2107,SI--BAW4-25,"TRANSPORT IN- / OUTDOOR GROUNDING BAW",5121,"HK1003-Rev.0E-3",TT_Task,"55902",-,-,-,0,TK_NotStart,06/04/2022,,31/05/2022,,"SI--BAW3-80 FS","SI--BAW3-80","SI--BAW4-40 FS","SI--BAW4-40",87,,95,,20,,22,,56,1560,"HK1003 -Blackpoint D2 - Rev.0E DD30092021"
1-2108,SI20SCA4-40,"(OTD-OS) ON SITE AIR COMPRESSOR SYSTEM 20SCA",5121,"HK1003-Rev.0E-3",TT_FinMile,"55902",-,-,-,0,TK_NotStart,20/09/2022,,20/09/2022,,"SI20SCA4-25 FS","SI20SCA4-25","SI20SCA6-15 FS","SI20SCA6-15",111,,111,,26,,26,,81,288,"HK1003 -Blackpoint D2 - Rev.0E DD30092021"
1-2109,SI20SCA2-80,"QUOTATION STAGE AIR COMPRESSOR SYSTEM SCA - ABORTED, DUE TO CLP DECISION TO CHANGE TO OIL FREE",5121,"HK1003-Rev.0E-3",TT_Task,"55902",-,-,-,100,TK_Complete,01/05/2021,01/05/2021,17/07/2021,17/07/2021,"SI20SCA2-75 FS,SI--3332-76 FS","SI20SCA2-75,SI--3332-76","SI20SCA2-66 FS,SI20SCA2-85 FS,SI20SCA2-89 SS,SI20SCA2-89 FS","SI20SCA2-66,SI20SCA2-85,SI20SCA2-89,SI20SCA2-89",39,39,50,50,9,9,11,11,10,,"HK1003 -Blackpoint D2 - Rev.0E DD30092021"
1-2110,SI20MA-6E41,"(RFP) READY FOR PIPE CONNECTION STEAM TURBINE - MAX/LBA/LBB/LBC",5121,"HK1003-Rev.0E-3",TT_FinMile,"55902",-,-,-,0,TK_NotStart,20/01/2023,,20/01/2023,,"SI20MA-6B38 FS,SI20MA-6A55 FS,SI20MAG6-46 FS,SI20MA-6B84 FS","SI20MA-6B38,SI20MA-6A55,SI20MAG6-46,SI20MA-6B84","SI20MAX6-75 FF,SI20LBB6J17 FF,SI11LBA6H71 FF,SI20LBA6J71 FF,SI20MAX6H15 FS","SI20MAX6-75,SI20LBB6J17,SI11LBA6H71,SI20LBA6J71,SI20MAX6H15",128,,128,,30,,30,,88,112,"HK1003 -Blackpoint D2 - Rev.0E DD30092021"
1-2111,SI20MA-6A50,"LP-FLAP READY FOR PRE-ASSEMBLING LBA80-PIPING",5121,"HK1003-Rev.0E-3",TT_Mile,"55902",-,-,-,0,TK_NotStart,04/12/2022,,04/12/2022,,"SI20MA-6A30 FS","SI20MA-6A30","SI20MA-8-10 SS,SI20LBA6J73 FS","SI20MA-8-10,SI20LBA6J73",122,,122,,28,,28,,86,784,"HK1003 -Blackpoint D2 - Rev.0E DD30092021"
1-2112,SI20PAH6H15,"ERECTION, NDT, PT / VALVES 20PAH",5121,"HK1003-Rev.0E-3",TT_Task,"55902",-,-,-,0,TK_NotStart,06/12/2022,,16/01/2023,,"SI20UPY6M10 FS,SI20--P6A00& SS,SI20PAH6-10 FS,SI20PAH6-40 FS,SI--P--2-50 FS,SI20PAB6A15 FS,SI20UMC5E72 FS,SI20UMC5E68 FS,SI---5P6A09 FS","SI20UPY6M10,SI20--P6A00&,SI20PAH6-10,SI20PAH6-40,SI--P--2-50,SI20PAB6A15,SI20UMC5E72,SI20UMC5E68,SI---5P6A09","SI20PGB8-10 FS,SI20PA-6H70 FF,SI20PAH7H15 FF,SI20PAH8-25 FS,SI20-6-16# FF,SI20-6-16# SS,SI20PCB8M10 FS,SI20PCB8M25 FS,SI20PAH6H16 FS","SI20PGB8-10,SI20PA-6H70,SI20PAH7H15,SI20PAH8-25,SI20-6-16#,SI20-6-16#,SI20PCB8M10,SI20PCB8M25,SI20PAH6H16",122,,128,,28,,29,,86,464,"HK1003 -Blackpoint D2 - Rev.0E DD30092021"
1-2113,SI20PA-6H70,"PRESSURE TEST PAB / 20PAH",5121,"HK1003-Rev.0E-3",TT_Task,"55902",-,-,-,0,TK_NotStart,08/04/2023,,14/04/2023,,"SI20PAH6H15 FF,SI20PAB6A16 FS,SI20PAB7A15 FF,SI--P--2-50 FS,SI20PAB6A15 FS,SI20PAH6-15 FS,SI20PAB6A17 FS,SI20GHC6-90& FS,SI20UMY6M70 FF","SI20PAH6H15,SI20PAB6A16,SI20PAB7A15,SI--P--2-50,SI20PAB6A15,SI20PAH6-15,SI20PAB6A17,SI20GHC6-90&,SI20UMY6M70","SI20PAH8-25 FS,SI20PAB8-05 FS,SI20PAD8-56 FS,SI20PCB8M10 FS,SI20PCB8M25 FS","SI20PAH8-25,SI20PAB8-05,SI20PAD8-56,SI20PCB8M10,SI20PCB8M25",140,,140,,32,,32,,94,56,"HK1003 -Blackpoint D2 - Rev.0E DD30092021"
1-2114,SI20MBV8H25,"COLD COMMISSIONING OIL MODULE 20MBV (INCL: FLUSHING)",5121,"HK1003-Rev.0E-3",TT_Task,"55902",-,-,-,0,TK_NotStart,09/06/2023,,15/06/2023,,"SI20PGB8B25 FS,SI20MBV8-10 FS,SI20CPA8-25 FS,SI20MBA8-25 SS,SI-PM-40 FS,SI20B--8-50 FS,SI20B--8-52 FS,SI20SGC8-37 FS","SI20PGB8B25,SI20MBV8-10,SI20CPA8-25,SI20MBA8-25,SI-PM-40,SI20B--8-50,SI20B--8-52,SI20SGC8-37","SI20M--8-65 FS,SI20MB-8-25# SS,SI20MKW8H25 SS","SI20M--8-65,SI20MB-8-25#,SI20MKW8H25",148,,149,,34,,34,,98,8,"HK1003 -Blackpoint D2 - Rev.0E DD30092021"
1-2115,SI20MBH8-25,"COLD COMMISSIONING TURBINE COOLING SYSTEM 20MBH",5121,"HK1003-Rev.0E-3",TT_Task,"55902",-,-,-,0,TK_NotStart,23/06/2023,,29/06/2023,,"SI20MBH8-10 FS,SI-PM-40 FS,SI20B--8-50 FS,SI20B--8-52 FS,SI20MBA8-25 FS","SI20MBH8-10,SI-PM-40,SI20B--8-50,SI20B--8-52,SI20MBA8-25","SI20MB-9-15 FS,SI20MB-8-25# SS","SI20MB-9-15,SI20MB-8-25#",150,,151,,35,,35,,99,8,"HK1003 -Blackpoint D2 - Rev.0E DD30092021"
1-2116,SI--P--2-05,"PREPARATION P&ID'S P-SYSTEMS (INPUT FOR M1)",5121,"HK1003-Rev.0E-3",TT_Task,"55902",-,-,-,100,TK_Complete,08/11/2020,08/11/2020,14/02/2021,14/02/2021,"SI--3332-02 FS","SI--3332-02","SI--PM-2-30 FS,SI--C--2-10 FF,SI--P--2-77 SS,SI20PGB2C86 SS,SI--PGB2D75 FS,SI20PGB2D86 FS,SI--PCB2B75 SS,SI20PCB2B64 SS,SI20PGB2B86 SS,SI--PGB2B75 SS,SI--PAC2B86 SS,SI--PDB2B75 SS,SI--P--2-10 FF,SI--P--2-70# SS,SI20PAS2A91 FF,SI20PAH2-75 SS,SI--G--2A05 FF,SI--P--2-00 FS","SI--PM-2-30,SI--C--2-10,SI--P--2-77,SI20PGB2C86,SI--PGB2D75,SI20PGB2D86,SI--PCB2B75,SI20PCB2B64,SI20PGB2B86,SI--PGB2B75,SI--PAC2B86,SI--PDB2B75,SI--P--2-10,SI--P--2-70#,SI20PAS2A91,SI20PAH2-75,SI--G--2A05,SI--P--2-00",14,14,28,28,3,3,6,6,0,,"HK1003 -Blackpoint D2 - Rev.0E DD30092021"
1-2117,SI--P--2I45,"DESIGN DATA SHEETS SAFETY / CONTROL VALVES P SYSTEMS",5121,"HK1003-Rev.0E-3",TT_Mile,"55902",-,-,-,100,TK_Complete,23/04/2021,23/04/2021,23/04/2021,23/04/2021,"SI20PGB2B87 FS,SI20PCB2B65 FS,SI--P--2-35 FS,SI--PAC2B14 FS","SI20PGB2B87,SI20PCB2B65,SI--P--2-35,SI--PAC2B14","SI--PM-2-60 FS","SI--PM-2-60",37,37,37,37,8,8,8,8,10,,"HK1003 -Blackpoint D2 - Rev.0E DD30092021"
1-2118,SI20LBG2C65,"(DF) INPUT FOR M2 EL. SUPERHEATER LBG",5121,"HK1003-Rev.0E-3",TT_FinMile,"55902",-,-,-,100,TK_Complete,28/05/2021,28/05/2021,28/05/2021,28/05/2021,"SI20LBG2C80 FS,SI20LBG2C85 FS","SI20LBG2C80,SI20LBG2C85","SI---2P2A10 FS","SI---2P2A10",42,42,42,42,10,10,10,10,14,,"HK1003 -Blackpoint D2 - Rev.0E DD30092021"
1-2119,SI20BAA7L55,"CALIBRATING OF CKA SYSTEM (SUPERVISOR)",5121,"HK1003-Rev.0E-3",TT_Task,"55902",-,-,-,0,TK_NotStart,11/01/2023,,13/01/2023,,"SI20BAA7-65 FS","SI20BAA7-65","SI20BAA7-56 FS","SI20BAA7-56",127,,127,,29,,29,,88,432,"HK1003 -Blackpoint D2 - Rev.0E DD30092021"
1-2120,SI20BAA7-65,"HIGH VOLTAGE/PRESSURE TEST IPB 20BAA",5121,"HK1003-Rev.0E-3",TT_Task,"55902",-,-,-,0,TK_NotStart,04/01/2023,,10/01/2023,,"SI20BAA7-15 FS,SI20BAA7-66 FS","SI20BAA7-15,SI20BAA7-66","SI20BAA7L55 FS,SI20BAA7-56 FS","SI20BAA7L55,SI20BAA7-56",126,,127,,29,,29,,88,432,"HK1003 -Blackpoint D2 - Rev.0E DD30092021"
1-2121,SI20UMC5B75,"WORK PREPARATION FOUNDATION 20UMC",5121,"HK1003-Rev.0E-3",TT_Task,"55902",-,-,-,27,TK_Active,04/10/2021,09/09/2021,20/12/2021,,"SI20UMC5Y15 FS,SI20UMC5Z46 FS,SI-----5-22 FS,SI20UMC2B55 FS,SI-----5-21& FS,SI-----5-20 FS,SI--UMC2A84 FS,SI-P222-84 FS,SI-P222-87 FS,SI-P222-89 FS,SI-P222-88 FS,SI-P222-128 FS,SI20UMC2B55 FF,SI20UMC5B75.00 SS,SI20UMC5B75.11 FF","SI20UMC5Y15,SI20UMC5Z46,SI-----5-22,SI20UMC2B55,SI-----5-21&,SI-----5-20,SI--UMC2A84,SI-P222-84,SI-P222-87,SI-P222-89,SI-P222-88,SI-P222-128,SI20UMC2B55,SI20UMC5B75.00,SI20UMC5B75.11","SI20UMC5B80# SS,SI20UMC5-05# SS,SI-P222-131# FF,SI-P222-131# SS,SI20UMC5B90 SS","SI20UMC5B80#,SI20UMC5-05#,SI-P222-131#,SI-P222-131#,SI20UMC5B90",61,57,72,,14,13,16,,31,696,"HK1003 -Blackpoint D2 - Rev.0E DD30092021"
1-2122,SI20UMC5B95,"(RFE) BUILDING FOUNDATION READY FOR ERECTION MAIN STEEL WORK 20UMC",5121,"HK1003-Rev.0E-3",TT_FinMile,"55902",-,-,-,0,TK_NotStart,01/02/2022,,01/02/2022,,"SI20UMC5A45 FS,SI20UMC5B90 FS,SI20UMC5B45 FS","SI20UMC5A45,SI20UMC5B90,SI20UMC5B45","SI20MB-6-15 FS,SI20UMC5B80# FF,SI20UBA5-7 FS,SI20UBH5-20 FS,SI20UEY5-105 FS,SI20UTG5-70.00 FS","SI20MB-6-15,SI20UMC5B80#,SI20UBA5-7,SI20UBH5-20,SI20UEY5-105,SI20UTG5-70.00",78,,78,,18,,18,,47,424,"HK1003 -Blackpoint D2 - Rev.0E DD30092021"
1-2123,SI20UBA8-50,"FEEDER COMMISSIONING LV SWITCHGEAR 20UBA8110/20",5121,"HK1003-Rev.0E-3",TT_Task,"55902",-,-,-,0,TK_NotStart,18/04/2023,,05/06/2023,,"SI20UBA8G26 FS,SI20BFC8-25 SS,SI20B--8-50 FS","SI20UBA8G26,SI20BFC8-25,SI20B--8-50","SI20PAD8-45 SS,SI20PAD8-55 SS,SI20MB-9-15 FS","SI20PAD8-45,SI20PAD8-55,SI20MB-9-15",141,,148,,33,,34,,95,200,"HK1003 -Blackpoint D2 - Rev.0E DD30092021"
1-2124,SI--SA-2-05,"CONCEPT DESIGN HVAC SYSTEM SA COMPLETE",5121,"HK1003-Rev.0E-3",TT_Mile,"55902",-,-,-,100,TK_Complete,05/03/2021,05/03/2021,05/03/2021,05/03/2021,"SI--SA-2-01 FS","SI--SA-2-01","SI--PM-2-30 FS,SI--SA-2-15 FS","SI--PM-2-30,SI--SA-2-15",30,30,30,30,7,7,7,7,6,,"HK1003 -Blackpoint D2 - Rev.0E DD30092021"
1-2125,SI--SA-2-20,"(DF) BASIC DESIGN HVAC SYSTEM SA",5121,"HK1003-Rev.0E-3",TT_FinMile,"55902",-,-,-,100,TK_Complete,29/04/2021,29/04/2021,29/04/2021,29/04/2021,"SI--SA-2-27 SS,SI--SA-2-15 FS","SI--SA-2-27,SI--SA-2-15","SI--SA-2-16 FS","SI--SA-2-16",38,38,38,38,9,9,9,9,10,,"HK1003 -Blackpoint D2 - Rev.0E DD30092021"
1-2126,SI--SA-2-16,"BASIC DESIGN after DF (part II) HVAC SYSTEM SA",5121,"HK1003-Rev.0E-3",TT_Task,"55902",-,-,-,100,TK_Complete,30/04/2021,30/04/2021,06/05/2021,06/05/2021,"SI--SA-2-20 FS","SI--SA-2-20","SI--SA-2-26 FS","SI--SA-2-26",38,38,39,39,9,9,9,9,10,,"HK1003 -Blackpoint D2 - Rev.0E DD30092021"
1-2127,SI--SA-2-01,"CONCEPT DESIGN HVAC SYSTEM SA",5121,"HK1003-Rev.0E-3",TT_Task,"55902",-,-,-,100,TK_Complete,15/01/2021,15/01/2021,04/03/2021,04/03/2021,"SI-----1-03 FS,SI-----1-01 FS,SI-----1-05 FS","SI-----1-03,SI-----1-01,SI-----1-05","SI20SA-2-75 FS,SI--SA-2-31 FS,SI--SA-2-15 FS,SI--SA-2-05 FS,SI--SA-2-27 FS,SI--SA-2-10 FF,SI--SA-2-15 FF","SI20SA-2-75,SI--SA-2-31,SI--SA-2-15,SI--SA-2-05,SI--SA-2-27,SI--SA-2-10,SI--SA-2-15",23,23,30,30,5,5,7,7,2,,"HK1003 -Blackpoint D2 - Rev.0E DD30092021"
1-2128,SI--SA-2-15,"BASIC DESIGN before DF (part I) HVAC SYSTEM SA",5121,"HK1003-Rev.0E-3",TT_Task,"55902",-,-,-,100,TK_Complete,05/03/2021,05/03/2021,29/04/2021,29/04/2021,"SI--SA-2-01 FS,SI--SA-2-05 FS,SI--SA-2-01 FF","SI--SA-2-01,SI--SA-2-05,SI--SA-2-01","SI--SA-2-20 FS","SI--SA-2-20",30,30,38,38,7,7,9,9,6,,"HK1003 -Blackpoint D2 - Rev.0E DD30092021"
1-2129,SI20EK-8H13,"(TOP-20EK) FUEL GAS METERING SYSTEM FOR GT20",5121,"HK1003-Rev.0E-3",TT_FinMile,"55902",-,-,-,0,TK_NotStart,18/05/2023,,18/05/2023,,"SI20EK-6-15 FS,SI20EKG6I15 FS,SI20EKG6H15 FS,SI20EK-7H15 FS,SI20BZK7F25 FS,SI20EK-7I15 FS,SI20EK-7-25 FS,SI20UEN5D45 FS,SI20MBA8-23& FS,SI20SGY7A24 FS","SI20EK-6-15,SI20EKG6I15,SI20EKG6H15,SI20EK-7H15,SI20BZK7F25,SI20EK-7I15,SI20EK-7-25,SI20UEN5D45,SI20MBA8-23&,SI20SGY7A24","SI20MB-8E25 FS,SI20EK-8-99 FS","SI20MB-8E25,SI20EK-8-99",145,,145,,34,,34,,97,8,"HK1003 -Blackpoint D2 - Rev.0E DD30092021"
1-2130,SI20HA-4D25,"TRANSPORT DRUMS HRSG20",5121,"HK1003-Rev.0E-3",TT_Task,"55902",-,-,-,0,TK_NotStart,08/02/2022,,14/03/2022,,"SI20HA-3D80 FS","SI20HA-3D80","SI20HA-4D40 FS","SI20HA-4D40",79,,84,,18,,19,,48,384,"HK1003 -Blackpoint D2 - Rev.0E DD30092021"
1-2131,SI20HA-3D26,"MANUFACTURING DRUMS HRSG20",5121,"HK1003-Rev.0E-3",TT_Task,"55902",-,-,-,68,TK_Active,28/02/2021,28/02/2021,10/01/2022,,"SI20HA-3D25 FS,SI--HA-2-81 FS,SI--HA-2-85 SS,SI-----1-03 FS,SI20---2M10 FS,SI--HA-2-10 FS","SI20HA-3D25,SI--HA-2-81,SI--HA-2-85,SI-----1-03,SI20---2M10,SI--HA-2-10","SI20HA-3B71 FS,SI20HA-3-15# SS,SI20HA-3-15# FF","SI20HA-3B71,SI20HA-3-15#,SI20HA-3-15#",30,30,75,,7,7,17,,5,384,"HK1003 -Blackpoint D2 - Rev.0E DD30092021"
1-2132,SI20HA-3C25,"DETAIL DESIGN / MANUFACTURING HEATING SURFACES HRSG20",5121,"HK1003-Rev.0E-3",TT_Task,"55902",-,-,-,63,TK_Active,28/01/2021,28/01/2021,20/02/2022,,"SI--HB-2-17 FF,SI--HA-2-85 FS,SI--HA-2-92 FS,SI--HA-2-81 FS,SI--HA-2-10 FS,SI--HA-2-85 SS","SI--HB-2-17,SI--HA-2-85,SI--HA-2-92,SI--HA-2-81,SI--HA-2-10,SI--HA-2-85","SI20LBH3D25 SS,SI20HA-3B70 FS","SI20LBH3D25,SI20HA-3B70",25,25,81,,6,6,18,,3,0,"HK1003 -Blackpoint D2 - Rev.0E DD30092021"
1-2133,SI20HAD8G25,"COLD COMMISSIONING HRSG LP STEAM (FOR CHEM. CLEANING) 20HAD80",5121,"HK1003-Rev.0E-3",TT_Task,"55902",-,-,-,0,TK_NotStart,29/04/2023,,12/05/2023,,"SI20BF-8-25 SS,SI20HAA8E17 FS,SI20HAD8G10 FS,SI20CPC8-25 FS,SI-PM-40 FS,SI-P222-83 FS","SI20BF-8-25,SI20HAA8E17,SI20HAD8G10,SI20CPC8-25,SI-PM-40,SI-P222-83","SI20HA-8-25# SS,SI20--P6-75 FS,SI20HA-8-25# FF","SI20HA-8-25#,SI20--P6-75,SI20HA-8-25#",143,,144,,33,,33,,96,0,"HK1003 -Blackpoint D2 - Rev.0E DD30092021"
1-2134,SI20UMC5D40,"(RFE) FINISHING WORKS 20UMC",5121,"HK1003-Rev.0E-3",TT_FinMile,"55902",-,-,-,0,TK_NotStart,14/08/2022,,14/08/2022,,"SI20UMC5D35 FS","SI20UMC5D35","SI20UMC5D45 FS,SI20SAM6E15 FS,SI--CYA7A15 FS,SI20SAM6E15 FF,SI20SAM6F15 FS,SI20SGY6-15 FS,SI20CY-7-15 FS","SI20UMC5D45,SI20SAM6E15,SI--CYA7A15,SI20SAM6E15,SI20SAM6F15,SI20SGY6-15,SI20CY-7-15",106,,106,,24,,24,,77,1024,"HK1003 -Blackpoint D2 - Rev.0E DD30092021"
1-2135,SP--MBK2-80,"PREPARE TEC RFQ DOC TURNING DEVICE MBK",5121,"HK1003-Rev.0E-3",TT_Task,"55902",-,-,-,100,TK_Complete,14/08/2021,14/08/2021,10/09/2021,10/09/2021,"SI-----1-04 SS,SI--3331-35 FS,SI-----1-05 FS","SI-----1-04,SI--3331-35,SI-----1-05","SP--MBK2-81 FS","SP--MBK2-81",54,54,57,57,12,12,13,13,25,,"HK1003 -Blackpoint D2 - Rev.0E DD30092021"
1-2136,SI20BFT8-10,"(TOP-20BFT01) LV-TRANSFORMER 20BFT01",5121,"HK1003-Rev.0E-3",TT_FinMile,"55902",-,-,-,0,TK_NotStart,20/02/2023,,20/02/2023,,"SI--9998-20& SS,SI20BFT7-15 FS,SI20UBA7-17 FS,SI20UBA7-104 FS,SI20BZK7A28 FS","SI--9998-20&,SI20BFT7-15,SI20UBA7-17,SI20UBA7-104,SI20BZK7A28","SI20BFT8-25 FS","SI20BFT8-25",133,,133,,31,,31,,91,392,"HK1003 -Blackpoint D2 - Rev.0E DD30092021"
1-2137,SI20LBH8D10,"(TOP-20LBH) HRSG START-UP / SHUT-DOWN STEAM SYSTEM",5121,"HK1003-Rev.0E-3",TT_FinMile,"55902",-,-,-,0,TK_NotStart,17/04/2023,,17/04/2023,,"SI20LCL6A15 FS,SI20LCL6A45 FS,SI20HA-4B40 FS,SI20LCL7A15 FS,SI20HA-6A48 FS,SI20HB-6-14 FS,SI20LBH6D15 FS,SI--9998-21& SS,SI20HA-6-56 FS","SI20LCL6A15,SI20LCL6A45,SI20HA-4B40,SI20LCL7A15,SI20HA-6A48,SI20HB-6-14,SI20LBH6D15,SI--9998-21&,SI20HA-6-56","SI20LBH8D25 FS","SI20LBH8D25",141,,141,,32,,32,,95,144,"HK1003 -Blackpoint D2 - Rev.0E DD30092021"
1-2138,SI--HA-2-59,"DESIGN REVIEW INCL. SIL-STUDY HRSG-SYSTEMS",5121,"HK1003-Rev.0E-3",TT_Task,"55902",-,-,-,100,TK_Complete,19/03/2021,19/03/2021,22/04/2021,22/04/2021,"SI--HA-2A87 FS,SI--HA-2-05 FS","SI--HA-2A87,SI--HA-2-05","SI--HA-2-65 FS,SI--HA-2-70 FS","SI--HA-2-65,SI--HA-2-70",32,32,37,37,7,7,8,8,6,,"HK1003 -Blackpoint D2 - Rev.0E DD30092021"
1-2139,SI--HA-2-05,"PREPARATION P&ID'S HRSG - SYSTEMS (INPUT FOR M1)",5121,"HK1003-Rev.0E-3",TT_Task,"55902",-,-,-,100,TK_Complete,12/12/2020,12/12/2020,29/01/2021,29/01/2021,"SI--L--2-10 SS,SI--B--2-04 FF,SI--HA-2-86 FF,SI--HA-2-11 FS,SI--HA-2-14 FS,SI--HA-2-76 FS,SI--HA-2A86 FS","SI--L--2-10,SI--B--2-04,SI--HA-2-86,SI--HA-2-11,SI--HA-2-14,SI--HA-2-76,SI--HA-2A86","SI--HA-2-95 SS,SI20HS-2-88 SS,SI--HA-2A87 FS,SI--HA-2-59 FS","SI--HA-2-95,SI20HS-2-88,SI--HA-2A87,SI--HA-2-59",19,19,25,25,4,4,6,6,1,,"HK1003 -Blackpoint D2 - Rev.0E DD30092021"
1-2140,SI--SA-2-26,"FINAL BASIC DESIGN DWGS HVAC SYSTEM SA AVAILABLE (RELEASED FOR DD)",5121,"HK1003-Rev.0E-3",TT_Mile,"55902",-,-,-,100,TK_Complete,07/05/2021,07/05/2021,07/05/2021,07/05/2021,"SI--SA-2-16 FS","SI--SA-2-16","SI20S--3J25 FS,SI20UMC2B66 FS","SI20S--3J25,SI20UMC2B66",39,39,39,39,9,9,9,9,11,,"HK1003 -Blackpoint D2 - Rev.0E DD30092021"
1-2141,SI--ZTA4-25,"TRANSPORT, MOBILIZATION CHEMICAL CLEANING EQUIPMENT",5121,"HK1003-Rev.0E-3",TT_Task,"55902",-,-,-,0,TK_NotStart,07/01/2023,,03/03/2023,,"SI--ZTA3-80 FS","SI--ZTA3-80","SI20ZT-6A00 FS,SI20ZTA6A00 FS,CL20UGX5-40 FS","SI20ZT-6A00,SI20ZTA6A00,CL20UGX5-40",127,,134,,29,,31,,88,0,"HK1003 -Blackpoint D2 - Rev.0E DD30092021"
1-2142,SI--ZTA3-25,"DESIGN, PROCUREMENT CHEMICAL CLEANING",5121,"HK1003-Rev.0E-3",TT_Task,"55902",-,-,-,0,TK_NotStart,13/08/2022,,11/11/2022,,"SI--ZTA2-85 FS","SI--ZTA2-85","SI--ZTA2-35 FS,SI--ZTA3B71 FS","SI--ZTA2-35,SI--ZTA3B71",106,,118,,24,,27,,77,224,"HK1003 -Blackpoint D2 - Rev.0E DD30092021"
1-2143,SI--ZTA2-35,"(DF) TEMPORARY PIPING AND PROCEDURE CHEMICAL CLEANING",5121,"HK1003-Rev.0E-3",TT_FinMile,"55902",-,-,-,0,TK_NotStart,11/11/2022,,11/11/2022,,"SI--ZTA3-25 FS,SI--ZTA2A20 SS,SI--ZTB2A20 SS","SI--ZTA3-25,SI--ZTA2A20,SI--ZTB2A20","SI20ZTA6A00 FS,SI20ZTB6A00 FS,SI20ZT-6A00 FS","SI20ZTA6A00,SI20ZTB6A00,SI20ZT-6A00",118,,118,,27,,27,,85,672,"HK1003 -Blackpoint D2 - Rev.0E DD30092021"
1-2144,SI20MBA4-26,"TRANSPORT GAS TURBINE 20MB-",5121,"HK1003-Rev.0E-3",TT_Task,"55902",-,-,-,0,TK_NotStart,30/04/2022,,23/07/2022,,"SI--LOG4-30 FS,SI20---3B88 FF,SI20---3B89 FS,SP20MB-3-80 FS,SP20MB-3C70 FS,SI20---3B88 FS,SP20MB-3F25 FS,SP20MB-3D80 FS","SI--LOG4-30,SI20---3B88,SI20---3B89,SP20MB-3-80,SP20MB-3C70,SI20---3B88,SP20MB-3F25,SP20MB-3D80","SI20MB-6-00 FF,SI20MB-4-40 FS,SI20MB-6-10 FS","SI20MB-6-00,SI20MB-4-40,SI20MB-6-10",91,,103,,21,,24,,60,184,"HK1003 -Blackpoint D2 - Rev.0E DD30092021"
1-2145,SI--SG-2-40,"PREPARATION FINAL FIRE PROTECTION CONCEPT & ESCAPE ROUTE AND FIRE PROTECTION DWGS",5121,"HK1003-Rev.0E-3",TT_Task,"55902",-,-,-,100,TK_Complete,06/06/2021,06/06/2021,03/07/2021,03/07/2021,"SI--UM-2-35 FS,SI--SG-2-30 FS,SI--SG-2-93 FS","SI--UM-2-35,SI--SG-2-30,SI--SG-2-93","SI--SG-2-50 FS,SI--SG-2-95 FS","SI--SG-2-50,SI--SG-2-95",44,44,48,48,10,10,11,11,16,,"HK1003 -Blackpoint D2 - Rev.0E DD30092021"
1-2146,SI20LBG7A17,"ELECTRICAL ERECTION / VALVES FOR STEAM SYSTEM 20LBG",5121,"HK1003-Rev.0E-3",TT_Task,"55902",-,-,-,0,TK_NotStart,02/01/2023,,08/01/2023,,"SI20BZK7E25 FF,SI20BZP7D18 FS,SI20BZP7D19 FS,SI20BZP7-5 FS,SI20BZP7-196 FS,SI20BZP7-174 FS,SI20UMY6M10 FS,SI20UMY6M11 FS,SI20UMY6M12 FS,SI--2227-68 FS,SI--BZP2-05 FS,SI--PEE7-20 FS,SI--BZP4B40 FS","SI20BZK7E25,SI20BZP7D18,SI20BZP7D19,SI20BZP7-5,SI20BZP7-196,SI20BZP7-174,SI20UMY6M10,SI20UMY6M11,SI20UMY6M12,SI--2227-68,SI--BZP2-05,SI--PEE7-20,SI--BZP4B40","SI20LBA8J10 FS,SI20LBA8H10 FS,SI20LBB8J11 FS,SI20LBG8A10 FS,SI20BZK7D11# FF,SI20BZK7D11# SS,SI20LBG6A47 FF","SI20LBA8J10,SI20LBA8H10,SI20LBB8J11,SI20LBG8A10,SI20BZK7D11#,SI20BZK7D11#,SI20LBG6A47",126,,127,,29,,29,,88,848,"HK1003 -Blackpoint D2 - Rev.0E DD30092021"
1-2147,SI20LBG7A15,"ELECTRICAL ERECTION / VALVES FOR STEAM SYSTEM 20LBG",5121,"HK1003-Rev.0E-3",TT_Task,"55902",-,-,-,0,TK_NotStart,02/01/2023,,08/01/2023,,"SI20BZK7E25 FF,SI20BZP7D18 FS,SI20BZP7D19 FS,SI20BZP7-5 FS,SI20BZP7-196 FS,SI20BZP7-174 FS,SI20UMY6M10 FS,SI20UMY6M11 FS,SI20UMY6M12 FS,SI--2227-68 FS,SI--BZP2-05 FS,SI--PEE7-20 FS,SI--BZP4B40 FS","SI20BZK7E25,SI20BZP7D18,SI20BZP7D19,SI20BZP7-5,SI20BZP7-196,SI20BZP7-174,SI20UMY6M10,SI20UMY6M11,SI20UMY6M12,SI--2227-68,SI--BZP2-05,SI--PEE7-20,SI--BZP4B40","SI20LBA8J10 FS,SI20LBA8H10 FS,SI20LBB8J11 FS,SI20LBG8A10 FS,SI20BZK7D11# FF,SI20BZK7D11# SS,SI20LBG6A45 FF","SI20LBA8J10,SI20LBA8H10,SI20LBB8J11,SI20LBG8A10,SI20BZK7D11#,SI20BZK7D11#,SI20LBG6A45",126,,127,,29,,29,,88,848,"HK1003 -Blackpoint D2 - Rev.0E DD30092021"
1-2148,SI20LBA7J15,"ELECTRICAL ERECTION / VALVES 20LBA80",5121,"HK1003-Rev.0E-3",TT_Task,"55902",-,-,-,0,TK_NotStart,18/03/2023,,24/03/2023,,"SI20BZK7E25 FF,SI20LBA6J45 FF,SI20BZP7D18 FS,SI20BZP7D19 FS,SI20BZP7-5 FS,SI20BZP7-196 FS,SI20BZP7-174 FS,SI20UMY6M10 FS,SI20UMY6M11 FS,SI20UMY6M12 FS,SI--2227-68 FS,SI--BZP2-05 FS,SI--PEE7-20 FS,SI--BZP4B40 FS,SI20BZP7-181 FS","SI20BZK7E25,SI20LBA6J45,SI20BZP7D18,SI20BZP7D19,SI20BZP7-5,SI20BZP7-196,SI20BZP7-174,SI20UMY6M10,SI20UMY6M11,SI20UMY6M12,SI--2227-68,SI--BZP2-05,SI--PEE7-20,SI--BZP4B40,SI20BZP7-181","SI20LBA8H10 FS,SI20LBB8J11 FS,SI20LBG8A10 FS,SI20LBA8J10 FS,SI20BZK7D11# FF,SI20BZK7D11# SS","SI20LBA8H10,SI20LBB8J11,SI20LBG8A10,SI20LBA8J10,SI20BZK7D11#,SI20BZK7D11#",137,,137,,31,,32,,93,192,"HK1003 -Blackpoint D2 - Rev.0E DD30092021"
1-2149,SI20ZT-6A00,"TEMPORARY INSERTS INSTALLATION FOR EMERGENCY STOP VALVES",5121,"HK1003-Rev.0E-3",TT_Task,"55902",-,-,-,0,TK_NotStart,22/04/2023,,12/05/2023,,"SI20HA-6-56 FS,SI--ZTA2-35 FS,SI20LBG6A15 FS,SI--ZTA4-25 FS","SI20HA-6-56,SI--ZTA2-35,SI20LBG6A15,SI--ZTA4-25","SI20--P6-75 FS","SI20--P6-75",142,,144,,33,,33,,96,0,"HK1003 -Blackpoint D2 - Rev.0E DD30092021"
1-2150,SI--HA-2E15,"PREL. PIPING DESIGN BASIC REPORT (PDBR)",5121,"HK1003-Rev.0E-3",TT_Mile,"55902",-,-,-,100,TK_Complete,12/12/2020,12/12/2020,12/12/2020,12/12/2020,"SI--HA-2A11 SS","SI--HA-2A11","SI--HA-2A40 FS,SI--HA-2A55 FS","SI--HA-2A40,SI--HA-2A55",19,19,19,19,4,4,4,4,1,,"HK1003 -Blackpoint D2 - Rev.0E DD30092021"
1-2151,SI--P--2-70,"(DF) I&C DATA P SYSTEMS",5121,"HK1003-Rev.0E-3",TT_FinMile,"55902",-,-,-,100,TK_Complete,06/07/2021,06/07/2021,06/07/2021,06/07/2021,"SI--P--2-79 FF,SI--P--2-28 FS","SI--P--2-79,SI--P--2-28","SI--C--2C55 FS","SI--C--2C55",48,48,48,48,11,11,11,11,21,,"HK1003 -Blackpoint D2 - Rev.0E DD30092021"
1-2152,SI--P--2-65,"(DF) PROCESS FINAL / INPUT FOR M2 P-SYSTEMS",5121,"HK1003-Rev.0E-3",TT_FinMile,"55902",-,-,-,100,TK_Complete,04/05/2021,04/05/2021,04/05/2021,04/05/2021,"SI--P--2-75 FS,SI--P--2-10 FS","SI--P--2-75,SI--P--2-10","SI--C--2C55 FS,SI--P--2-29 FS,SI--P--2-28 FS,SI---3P2A10 SS","SI--C--2C55,SI--P--2-29,SI--P--2-28,SI---3P2A10",39,39,39,39,9,9,9,9,11,,"HK1003 -Blackpoint D2 - Rev.0E DD30092021"
1-2153,SI20BAW2-30,"DETAIL DESIGN LIGHTNING PROTECTION BLDGS",5121,"HK1003-Rev.0E-3",TT_Task,"55902",-,-,-,62,TK_Active,06/05/2021,06/05/2021,30/12/2021,,"SI--BAW2-13 FS","SI--BAW2-13","SI20BAW2-75 FS,SI20BAW2-27 FS","SI20BAW2-75,SI20BAW2-27",39,39,73,,9,9,17,,11,2016,"HK1003 -Blackpoint D2 - Rev.0E DD30092021"
1-2154,SI20BAW3-25,"MANUFACTURING,TRANSPORT MATERIAL LIGHTNING PROTECTION",5121,"HK1003-Rev.0E-3",TT_Task,"55902",-,-,-,0,TK_NotStart,20/06/2022,,14/08/2022,,"SI20BAW2-85 FS,SI--2222-30 FS","SI20BAW2-85,SI--2222-30","SI20BAW5B16 FS,SI20BAW5C21 FS,SI20BAW5A15 FS,SI20BAW5D17 FS,SI20BAW5C22 FS,SI20BAW5-15 FS","SI20BAW5B16,SI20BAW5C21,SI20BAW5A15,SI20BAW5D17,SI20BAW5C22,SI20BAW5-15",98,,106,,22,,24,,70,816,"HK1003 -Blackpoint D2 - Rev.0E DD30092021"
1-2155,SI20BAW2-75,"(F) LIGHTNING PROT. DESIGN BLDGS (YE01) ON SITE, RELEASED FOR EXECUTION",5121,"HK1003-Rev.0E-3",TT_FinMile,"55902",-,-,-,0,TK_NotStart,30/12/2021,,30/12/2021,,"SI20BAW2-30 FS","SI20BAW2-30","SI20BAW2-28 FS","SI20BAW2-28",73,,73,,17,,17,,43,2016,"HK1003 -Blackpoint D2 - Rev.0E DD30092021"
1-2156,SI20MBQ6H45,"INSULATION PIPES / VALVES FOR STEAM SYSTEM 20MBQ",5121,"HK1003-Rev.0E-3",TT_Task,"55902",-,-,-,0,TK_NotStart,04/03/2023,,31/03/2023,,"SI20MBQ6H15 FF,SI-P2I-15 FS","SI20MBQ6H15,SI-P2I-15","SI20MBQ7H15 FF,SI20---6A15# FF","SI20MBQ7H15,SI20---6A15#",135,,138,,31,,32,,92,224,"HK1003 -Blackpoint D2 - Rev.0E DD30092021"
1-2157,SI20MBA4-27,"TRANSPORT GT SUPPORTS 20MB-",5121,"HK1003-Rev.0E-3",TT_Task,"55902",-,-,-,0,TK_NotStart,30/04/2022,,24/06/2022,,"SP20MB-3B80 FS","SP20MB-3B80","SI20MB-6-00 FS","SI20MB-6-00",91,,98,,21,,23,,60,240,"HK1003 -Blackpoint D2 - Rev.0E DD30092021"
1-2158,SI--B--2-30,"DETAIL DESIGN CABLE ROUTING",5121,"HK1003-Rev.0E-3",TT_Task,"55902",-,-,-,0,TK_NotStart,01/10/2021,,19/12/2021,,"SI--B--2A55 FS,SI--B--2-66 FS,SI--B--2-92 FS,SI--B--2-66 FF,SI--B--2-94 FS","SI--B--2A55,SI--B--2-66,SI--B--2-92,SI--B--2-66,SI--B--2-94","SI--B--2-68 FS,SI--B--2-67 FS","SI--B--2-68,SI--B--2-67",60,,72,,14,,16,,31,696,"HK1003 -Blackpoint D2 - Rev.0E DD30092021"
1-2159,SI--C--2-05,"GT PLANT ROOM NUMBERING SYSTEM FROM PLANT LAYOUT",5121,"HK1003-Rev.0E-3",TT_Mile,"55902",-,-,-,100,TK_Complete,18/04/2021,18/04/2021,18/04/2021,18/04/2021,"SI--5552-60 SS,SI-----1-04 SS","SI--5552-60,SI-----1-04","SI--5552-64 FS","SI--5552-64",37,37,37,37,8,8,8,8,9,,"HK1003 -Blackpoint D2 - Rev.0E DD30092021"
1-2160,SI--HA-2A56,"REVIEW PIPE STRESS CALCULATION FOR HRSG-SYSTEMS LAB/LBA10/LBB/C",5121,"HK1003-Rev.0E-3",TT_Task,"55902",-,-,-,100,TK_Complete,23/01/2021,23/01/2021,12/02/2021,12/02/2021,"SI--HA-2A55 FS,SI--HA-2A09 FS","SI--HA-2A55,SI--HA-2A09","SI--HA-2E20 FS","SI--HA-2E20",25,25,27,27,5,5,6,6,3,,"HK1003 -Blackpoint D2 - Rev.0E DD30092021"
1-2161,SI20MKA9-10,"START UP TEST WITH MBJ 20MBA",5121,"HK1003-Rev.0E-3",TT_Task,"55902",-,-,-,0,TK_NotStart,26/06/2023,,28/06/2023,,"SI20MBY9-35 FS,SI20EK-8-46 FS","SI20MBY9-35,SI20EK-8-46","SI20MKA9-41 FS","SI20MKA9-41",151,,151,,35,,35,,99,8,"HK1003 -Blackpoint D2 - Rev.0E DD30092021"
1-2162,SI20MBY9-35,"GT PROTECTION GT20",5121,"HK1003-Rev.0E-3",TT_Task,"55902",-,-,-,0,TK_NotStart,23/06/2023,,25/06/2023,,"SI20MB-9-05 FS","SI20MB-9-05","SI20MKA9-10 FS","SI20MKA9-10",150,,151,,35,,35,,99,8,"HK1003 -Blackpoint D2 - Rev.0E DD30092021"
1-2163,SI20MKA9-35,"GT GENERATOR PROTECTION TEST 20MKA",5121,"HK1003-Rev.0E-3",TT_Task,"55902",-,-,-,0,TK_NotStart,01/07/2023,,02/07/2023,,"SI20CH-8-25 FS,SI20MB-9-15 SS,SI20MB-9-20 SS,SI20CHA8-11 FS,SI20MKA8-10 FS,SI20BBA8-35 FS,SI-PM-40 FS,SI20B--8-50 FS","SI20CH-8-25,SI20MB-9-15,SI20MB-9-20,SI20CHA8-11,SI20MKA8-10,SI20BBA8-35,SI-PM-40,SI20B--8-50","SI20MKA9-42 FS","SI20MKA9-42",152,,152,,35,,35,,99,0,"HK1003 -Blackpoint D2 - Rev.0E DD30092021"
1-2164,SI20BUK8-50,"24V DC CONTROL VOLTAGE / 230V UPS  AVAILABLE",5121,"HK1003-Rev.0E-3",TT_Mile,"55902",-,-,-,0,TK_NotStart,21/02/2023,,21/02/2023,,"SI20BU-8-25 FS,SI20UBA8G28 FS,SI--BRU8-21 FS","SI20BU-8-25,SI20UBA8G28,SI--BRU8-21","SI20CJ-8-10 SS,SI20BFA8-35 FS,SI20BBA8-36 FS,SI20CYA8-30 FS,SI20M--8-25 FS,SI20BAT8-25 FS,SI20BFT8-25 FS,SI20BFT8-76 FS,SI20CR-8-25 FS,SI20BBT8-25 FS,SI20BBA7-51 FS,SI20SGC8-30 FS,SI20SGM8-40 FS","SI20CJ-8-10,SI20BFA8-35,SI20BBA8-36,SI20CYA8-30,SI20M--8-25,SI20BAT8-25,SI20BFT8-25,SI20BFT8-76,SI20CR-8-25,SI20BBT8-25,SI20BBA7-51,SI20SGC8-30,SI20SGM8-40",133,,133,,31,,31,,91,16,"HK1003 -Blackpoint D2 - Rev.0E DD30092021"
1-2165,SI20UBN5-15,"(H) START PLACING FORMWORK 20UBN",5121,"HK1003-Rev.0E-3",TT_Mile,"55902",-,-,-,0,TK_NotStart,07/07/2022,,07/07/2022,,"SI-----5-21& FS,SI20UBN5-5.01 FS","SI-----5-21&,SI20UBN5-5.01","SI20UBN5-10.00 FS","SI20UBN5-10.00",100,,100,,23,,23,,72,560,"HK1003 -Blackpoint D2 - Rev.0E DD30092021"
1-2166,SI20HB-4C25,"TRANSPORT SECONDARY STEEL STRUCTURE HRSG20_Last Part",5121,"HK1003-Rev.0E-3",TT_Task,"55902",-,-,-,0,TK_NotStart,29/01/2022,,27/02/2022,,"SI20HB-3C80 FS","SI20HB-3C80","SI20HB-4C40 FS","SI20HB-4C40",78,,82,,18,,19,,47,1368,"HK1003 -Blackpoint D2 - Rev.0E DD30092021"
1-2167,SI20UBA3G80,"(RFS) READY FOR SHIPMENT TO SITE ELECTRICAL MODULES 20UBA7110/20/30  (TO SITE)",5121,"HK1003-Rev.0E-3",TT_FinMile,"55902",-,-,-,0,TK_NotStart,27/04/2022,,27/04/2022,,"SI20UBA4B11 FS","SI20UBA4B11","SI20UBA4G25 FS","SI20UBA4G25",90,,90,,21,,21,,59,688,"HK1003 -Blackpoint D2 - Rev.0E DD30092021"
1-2168,SI20CJF4-40,"(OTD-OS) ON SITE ELECTRICAL / I&C EQUIPMENT HRSG20",5121,"HK1003-Rev.0E-3",TT_FinMile,"55902",-,-,-,0,TK_NotStart,18/05/2022,,18/05/2022,,"SI20CJF4-25 FS,SI20BFF4-25 FS","SI20CJF4-25,SI20BFF4-25","SI20UBA7L15 FS,SI20BZL7G15 FS,SI20BZP7-125 FS,SI20BZP7-194 FS,SI20BZP7-195 FS","SI20UBA7L15,SI20BZL7G15,SI20BZP7-125,SI20BZP7-194,SI20BZP7-195",93,,93,,21,,21,,65,856,"HK1003 -Blackpoint D2 - Rev.0E DD30092021"
1-2169,SI20CJF3-80,"(RFS) READY FOR SHIPMENTELECTRICAL / I&C EQUIPMENT HRSG20",5121,"HK1003-Rev.0E-3",TT_FinMile,"55902",-,-,-,0,TK_NotStart,18/04/2022,,18/04/2022,,"SI20CJF4B10 FS","SI20CJF4B10","SI20CJF4-25 FS","SI20CJF4-25",89,,89,,20,,20,,58,856,"HK1003 -Blackpoint D2 - Rev.0E DD30092021"
1-2170,SI20HA-4G40,"(OTD-OS) ON SITE HEATING SURFACES HRSG20 MODULE6",5121,"HK1003-Rev.0E-3",TT_FinMile,"55902",-,-,-,0,TK_NotStart,25/03/2022,,25/03/2022,,"SI20HA-4G25 FS","SI20HA-4G25","SI20HA-6C25 FS,SI20HA-6-26 FS,SI20HB-6-14 FS,SI20HB-6-13 FF","SI20HA-6C25,SI20HA-6-26,SI20HB-6-14,SI20HB-6-13",85,,85,,20,,20,,54,48,"HK1003 -Blackpoint D2 - Rev.0E DD30092021"
1-2171,SI20HA-4G25,"TRANSPORT HEATING SURFACES HRSG20 MODULE6",5121,"HK1003-Rev.0E-3",TT_Task,"55902",-,-,-,0,TK_NotStart,16/03/2022,,25/03/2022,,"SI--LOG4-30 FS,SI20HA-3G80 FS","SI--LOG4-30,SI20HA-3G80","SI20HA-4G40 FS","SI20HA-4G40",84,,85,,19,,20,,53,48,"HK1003 -Blackpoint D2 - Rev.0E DD30092021"
1-2172,SI--URA2-70,"ATKINS DD DETAIL DESIGN SUPERSTRUCTURE -20URA/URD",5121,"HK1003-Rev.0E-3",TT_Task,"55902",-,-,-,100,TK_Complete,30/05/2021,30/05/2021,24/06/2021,24/06/2021,"SI--URA2-76 FS,SI20URA2B4 FS,SI--UR-2-45 FS,SI--UR-2-45 FF,SI--5552-85 FS","SI--URA2-76,SI20URA2B4,SI--UR-2-45,SI--UR-2-45,SI--5552-85","SI--URA2-55 FS,SI--URA2-82 FF,SI20URA2B7 FS,SI20PUR2J94 SS","SI--URA2-55,SI--URA2-82,SI20URA2B7,SI20PUR2J94",43,43,46,46,10,10,10,10,15,,"HK1003 -Blackpoint D2 - Rev.0E DD30092021"
1-2173,SI--3332-60,"TCC PREPARATION OF ASSEMBLY DOCUMENTS AVAILABLE",5121,"HK1003-Rev.0E-3",TT_Mile,"55902",-,-,-,100,TK_Complete,15/08/2020,15/08/2020,15/08/2020,15/08/2020,"SI-----1-03 SS","SI-----1-03","SI--3335-65 FS,SI--3335-63# FF","SI--3335-65,SI--3335-63#",2,2,2,2,0,0,0,0,0,,"HK1003 -Blackpoint D2 - Rev.0E DD30092021"
1-2174,SI20UMC3E25,"FABRICATION DESIGN, FABRICATION, TRANSPORT STEEL PLATFORMS LOT1 20UMC",5121,"HK1003-Rev.0E-3",TT_Task,"55902",-,-,-,0,TK_NotStart,20/10/2021,,13/03/2022,,"SI--UMC2F75 FS,SI--UMC2B88 FF,SI--UMC2B87 FS","SI--UMC2F75,SI--UMC2B88,SI--UMC2B87","SI20UMC5E47 FS,SI20UMC5E49 FS,SI20UMC5E49 FF,SI20UMC5E55 FS,SI20UMC5E65 FS,SI20UMC5E67 FS,SI20UMC5E71 FS,SI20UMC5E73 FS,SI20UMC5E75 FS,SI20UMC5E51 FS,SI20UMC5E53 FS,SI20UMC5E57 FS,SI20UMC5E59 FS,SI20UMC5E61 FS,SI20UMC5E63 FS","SI20UMC5E47,SI20UMC5E49,SI20UMC5E49,SI20UMC5E55,SI20UMC5E65,SI20UMC5E67,SI20UMC5E71,SI20UMC5E73,SI20UMC5E75,SI20UMC5E51,SI20UMC5E53,SI20UMC5E57,SI20UMC5E59,SI20UMC5E61,SI20UMC5E63",63,,84,,14,,19,,35,448,"HK1003 -Blackpoint D2 - Rev.0E DD30092021"
1-2175,SI--UHA2-50,"PREPARATION FOUNDATION GROUNDING DWGS UHA",5121,"HK1003-Rev.0E-3",TT_Task,"55902",-,-,-,100,TK_Complete,16/07/2021,16/07/2021,29/07/2021,29/07/2021,"SI--UHA2-70 FF,SI--BAW2-02 FS","SI--UHA2-70,SI--BAW2-02","SI20UHA5-05 FS,SI--UHA2-80 FS","SI20UHA5-05,SI--UHA2-80",49,49,51,51,11,11,12,12,22,,"HK1003 -Blackpoint D2 - Rev.0E DD30092021"
1-2176,SI--BBA2-15,"BASIC DESIGN / SPECIFICATION MV SWITCHGEAR 20/90BBA/BBB",5121,"HK1003-Rev.0E-3",TT_Task,"55902",-,-,-,100,TK_Complete,05/02/2021,05/02/2021,30/04/2021,30/04/2021,"SI--3331-32 FS,SI--3332-27 FS,SI--B--2-50 FS,SI--3332-25 SS","SI--3331-32,SI--3332-27,SI--B--2-50,SI--3332-25","SI--BBA2-75 FS","SI--BBA2-75",26,26,38,38,6,6,9,9,4,,"HK1003 -Blackpoint D2 - Rev.0E DD30092021"
1-2177,SI--L--2-05,"PREPARATION P&ID'S L-SYSTEMS (INPUT FOR M1)",5121,"HK1003-Rev.0E-3",TT_Task,"55902",-,-,-,100,TK_Complete,29/11/2020,29/11/2020,15/02/2021,15/02/2021,"SI--3332-02 FS","SI--3332-02","SI--PM-2-30 FS,SI--C--2-10 SS,SI--L--2-77 SS,SI--L--2-35 SS,SI--LDK2B75 SS,SI20LDK2B86 FS,SI20LCA2B87 FS,SI--LAC2B75 SS,SI20LCB2B92 SS,SI--LCB2B75 SS,SI20LBG2C86 SS,SI20LBG2C75 SS,SI--L--2-10 SS,SI--L--2-00 FS","SI--PM-2-30,SI--C--2-10,SI--L--2-77,SI--L--2-35,SI--LDK2B75,SI20LDK2B86,SI20LCA2B87,SI--LAC2B75,SI20LCB2B92,SI--LCB2B75,SI20LBG2C86,SI20LBG2C75,SI--L--2-10,SI--L--2-00",17,17,28,28,4,4,6,6,1,,"HK1003 -Blackpoint D2 - Rev.0E DD30092021"
1-2178,SI--L--2-10,"ENGINEERING P&ID'S L-SYSTEMS",5121,"HK1003-Rev.0E-3",TT_Task,"55902",-,-,-,100,TK_Complete,12/12/2020,12/12/2020,29/01/2021,29/01/2021,"SI--L--2-05 SS","SI--L--2-05","SI--HA-2-05 SS,SI--C--2C50 FS,SI--L--2-35 FF,SI--L--2-75 FS,SI--L--2-25 FF,SI--L--2-81 FS","SI--HA-2-05,SI--C--2C50,SI--L--2-35,SI--L--2-75,SI--L--2-25,SI--L--2-81",19,19,25,25,4,4,6,6,1,,"HK1003 -Blackpoint D2 - Rev.0E DD30092021"
1-2179,SI--L--2-25,"DESIGN REVIEW INTERFACE ST / L-SYSTEMS",5121,"HK1003-Rev.0E-3",TT_Task,"55902",-,-,-,100,TK_Complete,12/04/2021,12/04/2021,02/05/2021,02/05/2021,"SI--M--2D00 SS,SI--L--2-10 FF,SI--L--2-81 FS","SI--M--2D00,SI--L--2-10,SI--L--2-81","SI--L--2-75 FF","SI--L--2-75",36,36,39,39,8,8,9,9,8,,"HK1003 -Blackpoint D2 - Rev.0E DD30092021"
1-2180,SI20GHD7H15,"ELECTRICAL ERECTION PIPES GHD FOR UGD IN UMC",5121,"HK1003-Rev.0E-3",TT_Task,"55902",-,-,-,0,TK_NotStart,09/01/2023,,15/01/2023,,"SI20GHD6I15 SS,SI20BZK7E25 FS,SI20BZP7D18 FS,SI20BZP7D19 FS,SI20BZP7-5 FS,SI20BZP7-196 FS,SI20BZP7-174 FS,SI20UMY6M10 FS,SI20UMY6M11 FS,SI20UMY6M12 FS,SI--2227-68 FS,SI--BZP2-05 FS,SI--PEE7-20 FS,SI--BZP4B40 FS","SI20GHD6I15,SI20BZK7E25,SI20BZP7D18,SI20BZP7D19,SI20BZP7-5,SI20BZP7-196,SI20BZP7-174,SI20UMY6M10,SI20UMY6M11,SI20UMY6M12,SI--2227-68,SI--BZP2-05,SI--PEE7-20,SI--BZP4B40","SI20GHD8A10 FS,SI20BZK7D11# FF,SI20BZK7D11# SS","SI20GHD8A10,SI20BZK7D11#,SI20BZK7D11#",127,,128,,29,,29,,88,840,"HK1003 -Blackpoint D2 - Rev.0E DD30092021"
1-2181,SI20BZP7-160,"ERECTION CABLE TRAYS BELOW ELECTRICAL MODULES 20UBA76xx/77xx/7410/73xx/7210/7110",5121,"HK1003-Rev.0E-3",TT_Task,"55902",-,-,-,0,TK_NotStart,07/05/2022,,10/06/2022,,"SI--PEE7-20 FS,SI--BZP2-05 FS,SI--BZP4B40 FS,SI--2227-68 FS,SI--BZP2-05 SS,SI20BZP7-26 FS,SI--PEE7-20 SS,SI20UBA5-17 FS,SI20UBA5-101 FS","SI--PEE7-20,SI--BZP2-05,SI--BZP4B40,SI--2227-68,SI--BZP2-05,SI20BZP7-26,SI--PEE7-20,SI20UBA5-17,SI20UBA5-101","SI20BBA8-10 FS,SI20BFA8-10 FS,SI20UBA7-104 FS,SI20UBA7-17 SS,SI20CJ-8-10 FS,SI20CPC8-10 FS,SI20BZK7D25 FS,SI20UMC5D50 FS,SI20MBA8-10 FS,SI20BFC8-10 FS,SI20BZK7E25 FS,SI20SGC6J15 FS,SI20UBA8-12 FS,SI20UBA8-11 FS,SI20BZK7A28 FS,SI20UBA7-102 FS,SI20UBA5-90 FS,SI20BZP7B10# FF,SI20BZP7B10# SS,SI20BZP7-120 FS,SI20BZP7-80 FS,SI20BZP7-198 FS,SI20BZK7B48 FS,SI20BZP7B43 SS,SI20BZK7-190 FS,SI20UBZ5-65 SS","SI20BBA8-10,SI20BFA8-10,SI20UBA7-104,SI20UBA7-17,SI20CJ-8-10,SI20CPC8-10,SI20BZK7D25,SI20UMC5D50,SI20MBA8-10,SI20BFC8-10,SI20BZK7E25,SI20SGC6J15,SI20UBA8-12,SI20UBA8-11,SI20BZK7A28,SI20UBA7-102,SI20UBA5-90,SI20BZP7B10#,SI20BZP7B10#,SI20BZP7-120,SI20BZP7-80,SI20BZP7-198,SI20BZK7B48,SI20BZP7B43,SI20BZK7-190,SI20UBZ5-65",92,,96,,21,,22,,63,560,"HK1003 -Blackpoint D2 - Rev.0E DD30092021"
1-2182,SI20QC-6-40,"(RFP) READY FOR PIPE CONNECTION DOSING CONTAINER QC",5121,"HK1003-Rev.0E-3",TT_FinMile,"55902",-,-,-,0,TK_NotStart,23/08/2022,,23/08/2022,,"SI20QC-6-15 SS","SI20QC-6-15","SI20QC-6H15 FS,SI20QC-6H17 FS","SI20QC-6H15,SI20QC-6H17",107,,107,,25,,25,,78,1632,"HK1003 -Blackpoint D2 - Rev.0E DD30092021"
1-2183,SI--UMC2B75,"(F) DETAIL DESIGN STEEL STRUCTURE WITH CONTRACTOR 20UMC",5121,"HK1003-Rev.0E-3",TT_FinMile,"55902",-,-,-,100,TK_Complete,11/08/2021,11/08/2021,11/08/2021,11/08/2021,"SI--UMC2B71 FS,SI--UMC2B70 FS,SI--UMC2B79 FS","SI--UMC2B71,SI--UMC2B70,SI--UMC2B79","SI20UMC3B25 FS,SI20UMC3E26 FS","SI20UMC3B25,SI20UMC3E26",53,53,53,53,12,12,12,12,25,,"HK1003 -Blackpoint D2 - Rev.0E DD30092021"
1-2184,SI20BAW2-27,"RFQ FOR LIGHTNING PROTECTION",5121,"HK1003-Rev.0E-3",TT_Task,"55902",-,-,-,0,TK_NotStart,31/12/2021,,06/01/2022,,"SI--3331-32 FS,SI20BAW2-30 FS","SI--3331-32,SI20BAW2-30","SI20BAW2-28 FS","SI20BAW2-28",73,,74,,17,,17,,43,2016,"HK1003 -Blackpoint D2 - Rev.0E DD30092021"
1-2185,SI20BAW2-85,"CONTRACT INTO FORCE FOR LIGHTNING PROTECTION",5121,"HK1003-Rev.0E-3",TT_Mile,"55902",-,-,-,0,TK_NotStart,21/01/2022,,21/01/2022,,"SI20BAW2-28 FS","SI20BAW2-28","SI20BAW3-25 FS","SI20BAW3-25",76,,76,,17,,17,,46,2016,"HK1003 -Blackpoint D2 - Rev.0E DD30092021"
1-2186,SI20UHA2B-12,"(RFS) READY FOR SHIPMENT EMBEDDED PARTS HRSG20",5121,"HK1003-Rev.0E-3",TT_FinMile,"55902",-,-,-,100,TK_Complete,03/08/2021,03/08/2021,03/08/2021,03/08/2021,"SI20UHA2B-9 FS,SI20UHA2B-11 FS","SI20UHA2B-9,SI20UHA2B-11","SI20UHA2B-13 FS,SI20UHA5-15 FS","SI20UHA2B-13,SI20UHA5-15",52,52,52,52,12,12,12,12,24,,"HK1003 -Blackpoint D2 - Rev.0E DD30092021"
1-2187,SI20GM-8E10,"(TOP-20GM-02) COLLECTION SUMPS AND DRAIN IN BUILDING STRUCTURES",5121,"HK1003-Rev.0E-3",TT_FinMile,"55902",-,-,-,0,TK_NotStart,10/04/2023,,10/04/2023,,"SI20GM-6E15 FS,SI20GM-7-15 FS,SI20UGU5-87 FS","SI20GM-6E15,SI20GM-7-15,SI20UGU5-87","SI20GM-8E25 FS,SI20UBH8-27 FS,SI20TPM24A8-30 FS","SI20GM-8E25,SI20UBH8-27,SI20TPM24A8-30",140,,140,,32,,32,,94,80,"HK1003 -Blackpoint D2 - Rev.0E DD30092021"
1-2188,SI--PAC3B26,"MANUFACTURING / SHOP TEST CIRC. CW PUMP 20PAC",5121,"HK1003-Rev.0E-3",TT_Task,"55902",-,-,-,48,TK_Active,09/04/2021,09/04/2021,02/04/2022,,"SI--PAC2B85 SS,SI--PAC2B85 FS","SI--PAC2B85,SI--PAC2B85","SI20PAC3B70 FS","SI20PAC3B70",35,35,87,,8,8,20,,8,384,"HK1003 -Blackpoint D2 - Rev.0E DD30092021"
1-2189,SI--UHA2-60,"(MS3) CONCRETE STRUCTURE FINAL DIMENSIONS, LOADS AVAILABLE UHA",5121,"HK1003-Rev.0E-3",TT_FinMile,"55902",-,-,-,100,TK_Complete,09/05/2021,09/05/2021,09/05/2021,09/05/2021,"SI--HB-2D62 FS,SI--HB-2B60 FF,SI--HA-2-85 FS,SI20LCL2B60 FS,SI--HA-2-81 FS,SI--HB-2A60 FS","SI--HB-2D62,SI--HB-2B60,SI--HA-2-85,SI20LCL2B60,SI--HA-2-81,SI--HB-2A60","SI--UHA2-70 FF,SI--UHA2-70 FS,SI20UHW2-10 FS,SI--UHA2-78 FS","SI--UHA2-70,SI--UHA2-70,SI20UHW2-10,SI--UHA2-78",40,40,40,40,9,9,9,9,11,,"HK1003 -Blackpoint D2 - Rev.0E DD30092021"
1-2190,SI20LBG4C40,"(OTD-OS) ON SITE EL.SUPERHEATER 20LBG",5121,"HK1003-Rev.0E-3",TT_FinMile,"55902",-,-,-,0,TK_NotStart,24/04/2022,,24/04/2022,,"SI20LBG4C25 FS","SI20LBG4C25","SI20LBG6C15 FS","SI20LBG6C15",90,,90,,21,,21,,59,616,"HK1003 -Blackpoint D2 - Rev.0E DD30092021"
1-2191,SI20LBG4C25,"TRANSPORT EL.SUPERHEATER 20LBG",5121,"HK1003-Rev.0E-3",TT_Task,"55902",-,-,-,0,TK_NotStart,28/02/2022,,24/04/2022,,"SI20LBG3C80 FS","SI20LBG3C80","SI20LBG4C40 FS","SI20LBG4C40",82,,90,,19,,21,,51,616,"HK1003 -Blackpoint D2 - Rev.0E DD30092021"
1-2192,SI20LBG3C26,"PROCURMENT / PRE-FABRICATION EL.SUPERHEATER 20LBG",5121,"HK1003-Rev.0E-3",TT_Task,"55902",-,-,-,96,TK_Active,28/06/2021,28/06/2021,03/10/2021,,"SI20LBG3C25 FS,SI20LBG2C85 FS","SI20LBG3C25,SI20LBG2C85","SI20LBG3C70 FS,SI20LBG3C80 FS","SI20LBG3C70,SI20LBG3C80",47,47,61,,11,11,14,,19,1568,"HK1003 -Blackpoint D2 - Rev.0E DD30092021"
1-2193,SP20MB-3D80,"DELIVERY GT SUPPORTS 20MB- EX WORKS",5121,"HK1003-Rev.0E-3",TT_FinMile,"55902",-,-,-,0,TK_NotStart,01/04/2022,,01/04/2022,,"SP20MB-3D25 FS","SP20MB-3D25","SP20MB-3-70 SS,SI20MBA4-26 FS","SP20MB-3-70,SI20MBA4-26",86,,86,,20,,20,,55,240,"HK1003 -Blackpoint D2 - Rev.0E DD30092021"
1-2194,SP20MB-3C25,"PROCUREMENT / MANUFACTURING GT SPECIAL TOOLS 20MB-",5121,"HK1003-Rev.0E-3",TT_Task,"55902",-,-,-,0,TK_NotStart,23/12/2021,,01/04/2022,,"SP20MB-3F25 FF,SP--MB-2-86 FS,SP20MB-3-25 FF","SP20MB-3F25,SP--MB-2-86,SP20MB-3-25","SI20---3-77 FS","SI20---3-77",72,,86,,16,,20,,43,408,"HK1003 -Blackpoint D2 - Rev.0E DD30092021"
1-2195,SP20MB-3D25,"PROCUREMENT / MANUFACTURING GT SUPPORTS 20MB-",5121,"HK1003-Rev.0E-3",TT_Task,"55902",-,-,-,0,TK_NotStart,04/10/2021,,01/04/2022,,"SP20MB-3-26 FS,SP--MB-2-86 FS,SP20MB-3-25 SS,SP20MB-3-25 FF","SP20MB-3-26,SP--MB-2-86,SP20MB-3-25,SP20MB-3-25","SP20MB-3D80 FS","SP20MB-3D80",61,,86,,14,,20,,31,240,"HK1003 -Blackpoint D2 - Rev.0E DD30092021"
1-2196,SI20PAC4B40,"(OTD-OS) ON SITE CIRC. CW PUMP 20PAC",5121,"HK1003-Rev.0E-3",TT_FinMile,"55902",-,-,-,0,TK_NotStart,25/06/2022,,25/06/2022,,"SI20PAC4B25 FS","SI20PAC4B25","SI20PAC6B15 FS","SI20PAC6B15",99,,99,,23,,23,,71,384,"HK1003 -Blackpoint D2 - Rev.0E DD30092021"
1-2197,SI20MAD4-25,"TRANSPORT ST BEARINGS 20MAD",5121,"HK1003-Rev.0E-3",TT_Task,"55902",-,-,-,0,TK_NotStart,28/04/2022,,22/06/2022,,"SP20MAD3-80 FS","SP20MAD3-80","SI20MAD4-40 FS","SI20MAD4-40",90,,98,,21,,23,,59,32,"HK1003 -Blackpoint D2 - Rev.0E DD30092021"
1-2198,SI20PAR7A16,"ELECTRICAL ERECTION 10/20 PAR MAKE UP WATER PIPES FOR COOLING TOWER",5121,"HK1003-Rev.0E-3",TT_Task,"55902",-,-,-,0,TK_NotStart,17/11/2022,,30/11/2022,,"SI20PAR6A15 FF,SI20BZP7-55 FS,SI20BZP7-65 FS,SI20BZP7-70 FS,SI20BZP7-170 FS,SI20BZP7-192 FS,SI20BZP7D18 FS,SI20BZP7D19 FS,SI20BZP7-5 FS,SI20BZP7-196 FS,SI20BZP7-174 FS,SI20UMY6M10 FS,SI20UMY6M11 FS,SI20UMY6M12 FS,SI--2227-68 FS,SI--BZP2-05 FS,SI--PEE7-20 FS,SI--BZP4B40 FS,SI20PAR6A16 FS","SI20PAR6A15,SI20BZP7-55,SI20BZP7-65,SI20BZP7-70,SI20BZP7-170,SI20BZP7-192,SI20BZP7D18,SI20BZP7D19,SI20BZP7-5,SI20BZP7-196,SI20BZP7-174,SI20UMY6M10,SI20UMY6M11,SI20UMY6M12,SI--2227-68,SI--BZP2-05,SI--PEE7-20,SI--BZP4B40,SI20PAR6A16","SI20PAR8-06 FS,SI20PA6-1# SS,SI20PA6-1# FF,SI20BZK7D11# FF,SI20BZK7D11# SS","SI20PAR8-06,SI20PA6-1#,SI20PA6-1#,SI20BZK7D11#,SI20BZK7D11#",119,,121,,27,,28,,85,1184,"HK1003 -Blackpoint D2 - Rev.0E DD30092021"
1-2199,SI20PAR6A15,"ERECTION, NDT, PT / VALVES (MECHANICAL) 20PAR MAKE UP WATER PIPES FOR COOLING TOWER",5121,"HK1003-Rev.0E-3",TT_Task,"55902",-,-,-,0,TK_NotStart,24/06/2022,,04/08/2022,,"SI20UQZ5-157 FF,SI20UQY5-157 FS,SI20UQY5-153 FS,SI20UQY5-149 FF,SI20PAS6B16 FS,SI20PAA2-75 FF,SI---5P6A09 FS","SI20UQZ5-157,SI20UQY5-157,SI20UQY5-153,SI20UQY5-149,SI20PAS6B16,SI20PAA2-75,SI---5P6A09","SI20PAR7A16 FF,SI20PAR8-06 FS,SI20PA6-1# SS,SI20PA6-1# FF,SI20PAR6A16 FS","SI20PAR7A16,SI20PAR8-06,SI20PA6-1#,SI20PA6-1#,SI20PAR6A16",98,,104,,23,,24,,71,1904,"HK1003 -Blackpoint D2 - Rev.0E DD30092021"
1-2200,SI20UBA5-46,"(RFE) FOUNDATION 20UBA8110/20",5121,"HK1003-Rev.0E-3",TT_FinMile,"55902",-,-,-,0,TK_NotStart,08/01/2023,,08/01/2023,,"SI20UBA5-52 FS,SI20UBA5-95 FS","SI20UBA5-52,SI20UBA5-95","SI20B--8-52 FS","SI20B--8-52",127,,127,,29,,29,,88,696,"HK1003 -Blackpoint D2 - Rev.0E DD30092021"
1-2201,SI20UBA5-59,"WORK PREPARATION / EXCAVATION FOUNDATION 20UBA8110/20",5121,"HK1003-Rev.0E-3",TT_Task,"55902",-,-,-,0,TK_NotStart,29/04/2022,,12/05/2022,,"SI20UBA2G75 FS,SI20URD5-45 FS,SI-----5-22 FS,SI-----5-21& FS,SI-----5-20 FS,SI20HA-6C22 FS,SI-P222-84 FS,SI-P222-128 FS,SI20UBA2C79 FS","SI20UBA2G75,SI20URD5-45,SI-----5-22,SI-----5-21&,SI-----5-20,SI20HA-6C22,SI-P222-84,SI-P222-128,SI20UBA2C79","SI20UBA5-11 FS,SI20UBD5-55 SS,SI20UTG5-50 SS,SI-P222-131# FF,SI-P222-131# SS","SI20UBA5-11,SI20UBD5-55,SI20UTG5-50,SI-P222-131#,SI-P222-131#",90,,92,,21,,21,,60,1256,"HK1003 -Blackpoint D2 - Rev.0E DD30092021"
1-2202,SI20UBA5-52,"CONSTRUCTION FOUNDATION  20UBA8110/20",5121,"HK1003-Rev.0E-3",TT_Task,"55902",-,-,-,0,TK_NotStart,13/05/2022,,16/06/2022,,"SI20UBA5-11 FS","SI20UBA5-11","SI20UBA5-46 FS,SI20UBD5-11 SS,SI20UBA5-93 FS,SI20UBA5B12 FS,SI20UBA5-100 FS","SI20UBA5-46,SI20UBD5-11,SI20UBA5-93,SI20UBA5B12,SI20UBA5-100",92,,97,,21,,22,,64,1256,"HK1003 -Blackpoint D2 - Rev.0E DD30092021"
1-2203,SI20UBA5-11,"(H) START PLACING FORMWORK 20UBA8110/20",5121,"HK1003-Rev.0E-3",TT_Mile,"55902",-,-,-,0,TK_NotStart,13/05/2022,,13/05/2022,,"SI20UBA5-59 FS,SI20URD5-45 FS,SI-----5-21& FS,SI20UBA2G79 FS","SI20UBA5-59,SI20URD5-45,SI-----5-21&,SI20UBA2G79","SI20UBA5-52 FS","SI20UBA5-52",92,,92,,21,,21,,64,1256,"HK1003 -Blackpoint D2 - Rev.0E DD30092021"
1-2204,SI20MAD4-40,"(OTD-OS) ON SITE ST BEARINGS 20MAD",5121,"HK1003-Rev.0E-3",TT_FinMile,"55902",-,-,-,0,TK_NotStart,22/06/2022,,22/06/2022,,"SI20MAD4-25 FS","SI20MAD4-25","SI20MA-6-07 FS","SI20MA-6-07",98,,98,,23,,23,,70,32,"HK1003 -Blackpoint D2 - Rev.0E DD30092021"
1-2205,SI20PAD3-80,"(RFS) READY FOR SHIPMENT COOLING TOWER EQUIPMENT (EU)  20PAD FILL BATCH 1",5121,"HK1003-Rev.0E-3",TT_FinMile,"55902",-,-,-,0,TK_NotStart,23/06/2022,,23/06/2022,,"SI20PAD4B10 FS","SI20PAD4B10","SI20PAD4-25 FS","SI20PAD4-25",98,,98,,23,,23,,70,64,"HK1003 -Blackpoint D2 - Rev.0E DD30092021"
1-2206,SI20PAD4-25,"TRANSPORT (EU)  20PAD FILL BATCH 1",5121,"HK1003-Rev.0E-3",TT_Task,"55902",-,-,-,0,TK_NotStart,24/06/2022,,11/08/2022,,"SI20PAD3-80 FS","SI20PAD3-80","SI20PAD4-40 FS","SI20PAD4-40",98,,105,,23,,24,,71,64,"HK1003 -Blackpoint D2 - Rev.0E DD30092021"
1-2207,SP20MA-4C25,"TRANSPORT ST LP OUTER CASING MA-",5121,"HK1003-Rev.0E-3",TT_Task,"55902",-,-,-,0,TK_NotStart,14/05/2022,,08/07/2022,,"SI--LOG4-30 FS,SP20MA-3C80 FS","SI--LOG4-30,SP20MA-3C80","SP20MA-4C40 FS","SP20MA-4C40",93,,100,,21,,23,,64,8,"HK1003 -Blackpoint D2 - Rev.0E DD30092021"
1-2208,SP20MA-3C80,"(RFS) READY FOR SHIPMENT ST LP OUTER CASING MA-",5121,"HK1003-Rev.0E-3",TT_FinMile,"55902",-,-,-,0,TK_NotStart,13/05/2022,,13/05/2022,,"SP20MA-4-11 FS","SP20MA-4-11","SP20MA-4C25 FS","SP20MA-4C25",92,,92,,21,,21,,64,8,"HK1003 -Blackpoint D2 - Rev.0E DD30092021"
1-2209,SI--BAW2-14,"GROUNDING MEASUREMENT / GROUNDING DESIGN REPORT",5121,"HK1003-Rev.0E-3",TT_Task,"55902",-,-,-,100,TK_Complete,26/02/2021,26/02/2021,22/04/2021,22/04/2021,"SI--B--2-03 FS,SI-----1-05 FS","SI--B--2-03,SI-----1-05","SI--BAW2-02 FS,SI--BAW2-13 SS","SI--BAW2-02,SI--BAW2-13",29,29,37,37,6,6,8,8,5,,"HK1003 -Blackpoint D2 - Rev.0E DD30092021"
1-2210,SI--BZL2-86,"BASIC DESIGN, SPECIFICATION LIGHTING/SMALL POWER BZL",5121,"HK1003-Rev.0E-3",TT_Task,"55902",-,-,-,100,TK_Complete,20/02/2021,20/02/2021,14/05/2021,14/05/2021,"SI--3331-32 FS,SI--3332-26 FS,SI-----1-03 SS","SI--3331-32,SI--3332-26,SI-----1-03","SI--BZL2-88 FS","SI--BZL2-88",29,29,40,40,6,6,9,9,5,,"HK1003 -Blackpoint D2 - Rev.0E DD30092021"
1-2211,SI20EK-7I15,"ELECTRICAL ERECTION / VALVES 20EKG70",5121,"HK1003-Rev.0E-3",TT_Task,"55902",-,-,-,0,TK_NotStart,26/02/2023,,11/03/2023,,"SI20EKG6H15 FS,SI20BZK7F25 FF,SI20BZP7D18 FS,SI20BZP7D19 FS,SI20BZP7-5 FS,SI20BZP7-196 FS,SI20BZP7-174 FS,SI20UMY6M10 FS,SI20UMY6M11 FS,SI20UMY6M12 FS,SI--2227-68 FS,SI--BZP2-05 FS,SI--PEE7-20 FS,SI--BZP4B40 FS,SI20EKG6I16 FF","SI20EKG6H15,SI20BZK7F25,SI20BZP7D18,SI20BZP7D19,SI20BZP7-5,SI20BZP7-196,SI20BZP7-174,SI20UMY6M10,SI20UMY6M11,SI20UMY6M12,SI--2227-68,SI--BZP2-05,SI--PEE7-20,SI--BZP4B40,SI20EKG6I16","SI20EK-7H15 FF,SI20EK-8H13 FS,SI20EK-8H14 FS,SI20BZK7D11# FF,SI20BZK7D11# SS","SI20EK-7H15,SI20EK-8H13,SI20EK-8H14,SI20BZK7D11#,SI20BZK7D11#",134,,136,,31,,31,,91,520,"HK1003 -Blackpoint D2 - Rev.0E DD30092021"
1-2212,SI20UMC5B35,"(RFE) RELEASED PROTOCOL CRANE RAIL AVAILABLE 20UMC",5121,"HK1003-Rev.0E-3",TT_FinMile,"55902",-,-,-,0,TK_NotStart,10/04/2022,,10/04/2022,,"SI20UMC5B49 FS","SI20UMC5B49","SI20MA-6B00 FS","SI20MA-6B00",88,,88,,20,,20,,57,832,"HK1003 -Blackpoint D2 - Rev.0E DD30092021"
1-2213,SI20QU-7-15,"ELECTRICAL ERECTION SAMPLING CONTAINER 20QU",5121,"HK1003-Rev.0E-3",TT_Task,"55902",-,-,-,0,TK_NotStart,02/12/2022,,08/12/2022,,"SI20QU-6-15 FS","SI20QU-6-15","SI20QU-8-10 FS,SI20BZK7D11# FF,SI20BZK7D11# SS","SI20QU-8-10,SI20BZK7D11#,SI20BZK7D11#",121,,122,,28,,28,,86,1256,"HK1003 -Blackpoint D2 - Rev.0E DD30092021"
1-2214,SI20MB-7H15,"ELECTRICAL ERECTION / VALVES 20MB (BOP)",5121,"HK1003-Rev.0E-3",TT_Task,"55902",-,-,-,0,TK_NotStart,04/02/2023,,10/02/2023,,"SI20MB-6A15 FS,SI20BZK7A26 FS,SI20BZP7D18 FS,SI20BZP7D19 FS,SI20BZP7-5 FS,SI20BZP7-196 FS,SI20BZP7-174 FS,SI20UMY6M10 FS,SI20UMY6M11 FS,SI20UMY6M12 FS,SI--2227-68 FS,SI--BZP2-05 FS,SI--PEE7-20 FS,SI--BZP4B40 FS,SI20MB-6A16 FS","SI20MB-6A15,SI20BZK7A26,SI20BZP7D18,SI20BZP7D19,SI20BZP7-5,SI20BZP7-196,SI20BZP7-174,SI20UMY6M10,SI20UMY6M11,SI20UMY6M12,SI--2227-68,SI--BZP2-05,SI--PEE7-20,SI--BZP4B40,SI20MB-6A16","SI20MBA8A10 FS,SI20MBA8B10 FS,SI20MBX8-10 FS,SI20MBV8-10 FS,SI20MBA8D10 FS,SI20MBL8-10 FS,SI20MBP8-10 FS,SI20MBX8E10 FS,SI20MBH8-10 FS,SI20MBA8-10 FS,SI20BZK7D11# FF,SI20BZK7D11# SS","SI20MBA8A10,SI20MBA8B10,SI20MBX8-10,SI20MBV8-10,SI20MBA8D10,SI20MBL8-10,SI20MBP8-10,SI20MBX8E10,SI20MBH8-10,SI20MBA8-10,SI20BZK7D11#,SI20BZK7D11#",131,,131,,30,,30,,89,616,"HK1003 -Blackpoint D2 - Rev.0E DD30092021"
1-2215,SI---1P6A05,"PREFABRICATION ON SITE ALL SYSTEMS  - LOT 4",5121,"HK1003-Rev.0E-3",TT_Task,"55902",-,-,-,0,TK_NotStart,28/04/2022,,19/05/2022,,"SI---2S6-05& FS,SI---1P6A6 FS","SI---2S6-05&,SI---1P6A6","SI20LBA6J15 FS,SI20---6A15# SS,SI20LBB6J15 FS,SI20LBG6A15 FS,SI20LAB6H15 FS,SI20LBA6H15 FS,SI20---6A15# FF,SI20LBB6J17 FS,SI20LBG6A17 FS,SI11LBA6H71 FS,SI20LBA6J71 FS,SI20PAB6A16 FS,SI20PAB6A15 FS,SI20PAB6A17 FS,SI20EKG6H15 FS,SI20MAG6A15 FS,SI20MAW6H15 FS,SI20---6A15# FS,SI20LCA6A15 FS,SI20LDK6A15 FS,SI20EKT6I15 FS,SI20LCL6A15 FS,SI20LCA6A16 FS,SI20LCA6A46 FS,SI20EKG6H16 FS,SI20MAM6A15 FS,SI20MAG6A46 FS,SI20PCB6M10 FS,SI20MAN6H15 FS,SI20LCW6H15 FS,SI20---6A15# SF,SI20MAN6-15 FS,SI20MAX6H15 FS,SI20MAV6H15 FS,SI20GHC6H15 FS,SI20MAL6A15 FS,SI20GHC6H17 FS,SI20MAN6-36 FS,SI20MAJ6A15 FS,SI20MAX6H16 FS,SI20HSJ6A15 FS,SI20LCE6A15 FS","SI20LBA6J15,SI20---6A15#,SI20LBB6J15,SI20LBG6A15,SI20LAB6H15,SI20LBA6H15,SI20---6A15#,SI20LBB6J17,SI20LBG6A17,SI11LBA6H71,SI20LBA6J71,SI20PAB6A16,SI20PAB6A15,SI20PAB6A17,SI20EKG6H15,SI20MAG6A15,SI20MAW6H15,SI20---6A15#,SI20LCA6A15,SI20LDK6A15,SI20EKT6I15,SI20LCL6A15,SI20LCA6A16,SI20LCA6A46,SI20EKG6H16,SI20MAM6A15,SI20MAG6A46,SI20PCB6M10,SI20MAN6H15,SI20LCW6H15,SI20---6A15#,SI20MAN6-15,SI20MAX6H15,SI20MAV6H15,SI20GHC6H15,SI20MAL6A15,SI20GHC6H17,SI20MAN6-36,SI20MAJ6A15,SI20MAX6H16,SI20HSJ6A15,SI20LCE6A15",90,,93,,21,,21,,59,696,"HK1003 -Blackpoint D2 - Rev.0E DD30092021"
1-2216,SI20HB-4B25,"TRANSPORT SECONDARY STEEL STRUCTURE HRSG20_1st Part incl. Drum Supports",5121,"HK1003-Rev.0E-3",TT_Task,"55902",-,-,-,0,TK_NotStart,09/01/2022,,07/02/2022,,"SI20HB-3B80 FS,SI20HB-4B11 FS","SI20HB-3B80,SI20HB-4B11","SI20HB-4B40 FS","SI20HB-4B40",75,,79,,17,,18,,44,640,"HK1003 -Blackpoint D2 - Rev.0E DD30092021"
1-2217,SI20QJ-8B11,"(TOP-20QJA-02) CO2 CENTRAL SUPPLY SYSTEM",5121,"HK1003-Rev.0E-3",TT_FinMile,"55902",-,-,-,0,TK_NotStart,25/04/2023,,25/04/2023,,"SI20QJ-6B42 FS,SI--9998-22& FS,SI20QJA7A16 FS","SI20QJ-6B42,SI--9998-22&,SI20QJA7A16","SI20SAM8-29 SS","SI20SAM8-29",142,,142,,33,,33,,96,8,"HK1003 -Blackpoint D2 - Rev.0E DD30092021"
1-2218,SI20UVM5-11,"(H) START PLACING FORMWORK 20UVM01",5121,"HK1003-Rev.0E-3",TT_Mile,"55902",-,-,-,0,TK_NotStart,12/05/2022,,12/05/2022,,"SI20UVM5-05 FS,SI-----5-21& FS,SI20UVM2-87 FS","SI20UVM5-05,SI-----5-21&,SI20UVM2-87","SI20UVM5-16 FS,SI20UVM5-16.00 FS","SI20UVM5-16,SI20UVM5-16.00",92,,92,,21,,21,,64,848,"HK1003 -Blackpoint D2 - Rev.0E DD30092021"
1-2219,SI20LAC7B15,"ELECTRICAL ERECTION FEEDWATER PUMPS 20LAC",5121,"HK1003-Rev.0E-3",TT_Task,"55902",-,-,-,0,TK_NotStart,20/08/2022,,14/10/2022,,"SI20LAC2B05 FS,SI20LAC6B15 FS,SI20BZP7-135 FS","SI20LAC2B05,SI20LAC6B15,SI20BZP7-135","SI20LAC6B16 FF,SI20BZK7D11# FF,SI20BZK7D11# SS,SI20LAC8B10 FS","SI20LAC6B16,SI20BZK7D11#,SI20BZK7D11#,SI20LAC8B10",107,,114,,24,,26,,78,336,"HK1003 -Blackpoint D2 - Rev.0E DD30092021"
1-2220,SI20L--8-35,"COLD COMMISSIONING WATER SYSTEMS AFTER CHEMICAL CLEANING 20LAA/LCA30/EKT30",5121,"HK1003-Rev.0E-3",TT_Task,"55902",-,-,-,0,TK_NotStart,04/06/2023,,10/06/2023,,"SI20--P6-75 FS,SI20L--6A80 SS,SI-PM-40 FS","SI20--P6-75,SI20L--6A80,SI-PM-40","SI20LAC8B26 FS,SI20--P8A25# SS,SI20LBA8-35 FS","SI20LAC8B26,SI20--P8A25#,SI20LBA8-35",148,,149,,34,,34,,98,8,"HK1003 -Blackpoint D2 - Rev.0E DD30092021"
1-2221,SI20LBA8-35,"FINAL COLD COMMISSIONING STEAM SYSTEM 20LBA",5121,"HK1003-Rev.0E-3",TT_Task,"55902",-,-,-,0,TK_NotStart,11/06/2023,,17/06/2023,,"SI20--P6-75 FS,SI20L--8-35 FS","SI20--P6-75,SI20L--8-35","SI20--P8A25# SS,SI--C--8-58 FS","SI20--P8A25#,SI--C--8-58",149,,150,,34,,35,,98,8,"HK1003 -Blackpoint D2 - Rev.0E DD30092021"
1-2222,SI20MKA5-25,"FIRST GROUTING OF FIXATORS MKA",5121,"HK1003-Rev.0E-3",TT_Task,"55902",-,-,-,0,TK_NotStart,17/07/2022,,23/07/2022,,"SI20MKA6-09 FF","SI20MKA6-09","SI20MKA6-12 FS","SI20MKA6-12",102,,103,,23,,24,,74,392,"HK1003 -Blackpoint D2 - Rev.0E DD30092021"
1-2223,SI20MKA6-18,"GENERATOR READY FOR Cable Trays / E and I&C / Fire Fighting / Enclosure",5121,"HK1003-Rev.0E-3",TT_Mile,"55902",-,-,-,0,TK_NotStart,10/09/2022,,10/09/2022,,"SI20MKA6E17 FS","SI20MKA6E17","SI20BZK7A27 FS,SI20BZP7-110 FS,SI20BZP7-140 FS,SI20BZP7-183 FS,SI20BZP7-185 FS,SI20BZK7E26 FS,SI20MKA6A15 FS","SI20BZK7A27,SI20BZP7-110,SI20BZP7-140,SI20BZP7-183,SI20BZP7-185,SI20BZK7E26,SI20MKA6A15",110,,110,,25,,25,,80,448,"HK1003 -Blackpoint D2 - Rev.0E DD30092021"
1-2224,SI20EK-3-26,"DESIGN / MANUFACTURING / PRE ERECTION / SHOP TEST GAS FINAL FILTER/ PREHEATER 20EKG",5121,"HK1003-Rev.0E-3",TT_Task,"55902",-,-,-,24,TK_Active,28/06/2021,28/06/2021,19/07/2022,,"SI--EK-2-85 FS","SI--EK-2-85","SI--EK-3-70 FS","SI--EK-3-70",47,47,102,,11,11,23,,19,656,"HK1003 -Blackpoint D2 - Rev.0E DD30092021"
1-2225,SI20HA-9A45&,"START STEAM BLOWING HRSG 20",5121,"HK1003-Rev.0E-3",TT_Mile,"55902",-,-,-,0,TK_NotStart,03/07/2023,,03/07/2023,,"SI--HA-9-45& SS","SI--HA-9-45&","SI20HA-9A45 FS","SI20HA-9A45",152,,152,,35,,35,,99,0,"HK1003 -Blackpoint D2 - Rev.0E DD30092021"
1-2226,SI20MBA6-40,"(RFP) READY FOR PIPE CONNECTION GT20 MBA",5121,"HK1003-Rev.0E-3",TT_FinMile,"55902",-,-,-,0,TK_NotStart,21/10/2022,,21/10/2022,,"SI20MBA6-16 FS,SI20MBR6-49 FS","SI20MBA6-16,SI20MBR6-49","SI20MBA8A10 FS,SI20MBA8-10 FS,SI20MBA8B10 FS,SI20MBX8-10 FS,SI20MBV8-10 FS,SI20MBA8D10 FS,SI20MBL8-10 FS,SI20MBP8-10 FS,SI20MBX8E10 FS,SI20MBH8-10 FS,SI20MBA6A15 FS,SI20MB-6A15 FS,SI20MBA6F15 FS,SI20---6A15 FS,SI20MBA6D15 FS","SI20MBA8A10,SI20MBA8-10,SI20MBA8B10,SI20MBX8-10,SI20MBV8-10,SI20MBA8D10,SI20MBL8-10,SI20MBP8-10,SI20MBX8E10,SI20MBH8-10,SI20MBA6A15,SI20MB-6A15,SI20MBA6F15,SI20---6A15,SI20MBA6D15",115,,115,,27,,27,,83,176,"HK1003 -Blackpoint D2 - Rev.0E DD30092021"
1-2227,SI--CYA2-80,"QUOTATION STAGE TELECOMMUNICATION CYA",5121,"HK1003-Rev.0E-3",TT_Task,"55902",-,-,-,0,TK_NotStart,05/12/2021,,29/01/2022,,"SI--CYA2-75 FS","SI--CYA2-75","SI--CYA2-85 FS","SI--CYA2-85",70,,78,,16,,18,,40,136,"HK1003 -Blackpoint D2 - Rev.0E DD30092021"
1-2228,SI--BZP2-30,"DETAIL DESIGN CABLE SUPPORT SYSTEM BZP",5121,"HK1003-Rev.0E-3",TT_Task,"55902",-,-,-,0,TK_NotStart,17/12/2021,,10/03/2022,,"SI--UB-2-35 FS,SI--BZP2-85 FS,SI--UBF2B70 SS,SI20UBD2-15 SS,SI--UBA2-81 SS,SI20UBX2-55 SS,SI--UMC2B70 SS,SI--BZP2-15 FS,SI--BZP2-103 SS","SI--UB-2-35,SI--BZP2-85,SI--UBF2B70,SI20UBD2-15,SI--UBA2-81,SI20UBX2-55,SI--UMC2B70,SI--BZP2-15,SI--BZP2-103","SI--BZP2-50 FS","SI--BZP2-50",71,,83,,16,,19,,42,296,"HK1003 -Blackpoint D2 - Rev.0E DD30092021"
1-2229,SI--SA-2-27,"INPUT FOR HEAT LOADS D&C HVAC-SYS. SA",5121,"HK1003-Rev.0E-3",TT_FinMile,"55902",-,-,-,100,TK_Complete,04/03/2021,04/03/2021,04/03/2021,04/03/2021,"SI--SA-2-01 FS,SI--SA-2-10 FS","SI--SA-2-01,SI--SA-2-10","SI20SA-2-75 FS,SI--SA-2-20 SS","SI20SA-2-75,SI--SA-2-20",30,30,30,30,7,7,7,7,5,,"HK1003 -Blackpoint D2 - Rev.0E DD30092021"
1-2230,SP20MBX4C25,"SUPPLY GT HYDRAULIC OIL 20MBX",5121,"HK1003-Rev.0E-3",TT_Mile,"55902",-,-,-,0,TK_NotStart,21/02/2023,,21/02/2023,,"SI-----1-04 SS,SI20MA-6D50 FS","SI-----1-04,SI20MA-6D50","SI20MBV6-55 FS,SI20MAV6-55 FS,SI20MAV7-30 FS","SI20MBV6-55,SI20MAV6-55,SI20MAV7-30",133,,133,,31,,31,,91,8,"HK1003 -Blackpoint D2 - Rev.0E DD30092021"
1-2231,SI--BZL2-80,"QUOTATION STAGE LIGHTING & SMALL POWER BZL",5121,"HK1003-Rev.0E-3",TT_Task,"55902",-,-,-,86,TK_Active,13/05/2021,13/05/2021,22/10/2021,,"SI--BZL2-75 FS","SI--BZL2-75","SI--BZL2-85 FS","SI--BZL2-85",40,40,63,,9,9,14,,12,240,"HK1003 -Blackpoint D2 - Rev.0E DD30092021"
1-2232,SI20BTA3-25,"DETAIL DESIGN / MANUFACTURING / SHOP TEST BATTERIES RACKS BTA",5121,"HK1003-Rev.0E-3",TT_Task,"55902",-,-,-,0,TK_NotStart,07/10/2021,,12/01/2022,,"SI20BTA2-85 FS,SI--B--2A55 FS","SI20BTA2-85,SI--B--2A55","SI20BTA4B10 FS,SI20BTA3A26 FS,SI20BTA4B10 FF","SI20BTA4B10,SI20BTA3A26,SI20BTA4B10",61,,75,,14,,17,,32,720,"HK1003 -Blackpoint D2 - Rev.0E DD30092021"
1-2233,SI20BTA3A25,"DETAIL DESIGN / MANUFACTURING / SHOP TEST BATTERIES BTA",5121,"HK1003-Rev.0E-3",TT_Task,"55902",-,-,-,0,TK_NotStart,07/10/2021,,06/04/2022,,"SI20BTA2-85 FS,SI--B--2A55 FS","SI20BTA2-85,SI--B--2A55","SI20BTA3A26 FS,SI20UBA3B79 FS","SI20BTA3A26,SI20UBA3B79",61,,87,,14,,20,,32,1536,"HK1003 -Blackpoint D2 - Rev.0E DD30092021"
1-2234,SI20HB-4D40,"(OTD-OS) ON SITE STACK HRSG20",5121,"HK1003-Rev.0E-3",TT_FinMile,"55902",-,-,-,0,TK_NotStart,14/03/2022,,14/03/2022,,"SI20HB-4D25 FS","SI20HB-4D25","SI20HB-6-45 FS,SI20HB-6-41 FS,SI20HB-6-44 FS,SI20HB-6-42 FS,SI20HB-6-51 FS","SI20HB-6-45,SI20HB-6-41,SI20HB-6-44,SI20HB-6-42,SI20HB-6-51",84,,84,,19,,19,,52,376,"HK1003 -Blackpoint D2 - Rev.0E DD30092021"
1-2235,SI--EK-8-08,"FUEL GAS REQUIRED FROM CUSTOMER",5121,"HK1003-Rev.0E-3",TT_Mile,"55902",-,-,-,0,TK_NotStart,26/04/2023,,26/04/2023,,"SI20BZL8E27 FS","SI20BZL8E27","SI20EK-8-25 FS,SI20TPM1A8-30 FS,SI20TPM1A8-26 FS,SI20TPM1B8-26 FS,SI20MB-9-15 FS","SI20EK-8-25,SI20TPM1A8-30,SI20TPM1A8-26,SI20TPM1B8-26,SI20MB-9-15",142,,142,,33,,33,,96,0,"HK1003 -Blackpoint D2 - Rev.0E DD30092021"
1-2236,SI--HA-2A11,"PROJECT SPEC. PREL. PIPE ROUTING AND SUPPORT CONCEPT HRSG",5121,"HK1003-Rev.0E-3",TT_Task,"55902",-,-,-,100,TK_Complete,31/10/2020,31/10/2020,11/12/2020,11/12/2020,"SI20---2M10 SS,SI-----1-03 FS","SI20---2M10,SI-----1-03","SI--HA-2A40 FS,SI--HA-2E15 SS,SI--HA-2E65 FS,SI--HA-2A55 SS,SI20HA-3E84 FS,SI--HA-2-85 FS","SI--HA-2A40,SI--HA-2E15,SI--HA-2E65,SI--HA-2A55,SI20HA-3E84,SI--HA-2-85",13,13,18,18,3,3,4,4,0,,"HK1003 -Blackpoint D2 - Rev.0E DD30092021"
1-2237,SI--HA-2A55,"STRESS ANALYSIS BY MTEC FOR HRSG-SYSTEMS LAB/LBA10/LBB/C",5121,"HK1003-Rev.0E-3",TT_Task,"55902",-,-,-,100,TK_Complete,12/12/2020,12/12/2020,22/01/2021,22/01/2021,"SI--H--2-10 SS,SI--HA-2A40 FS,SI--HA-2E15 FS,SI--HA-2A11 SS","SI--H--2-10,SI--HA-2A40,SI--HA-2E15,SI--HA-2A11","SI--HA-2E65 FS,SI---1P2A10 FS,SI--HA-2A09 FS,SI--HA-2A56 FS","SI--HA-2E65,SI---1P2A10,SI--HA-2A09,SI--HA-2A56",19,19,24,24,4,4,5,5,1,,"HK1003 -Blackpoint D2 - Rev.0E DD30092021"
1-2238,SI--HA-2A09,"PREL. PIPE STRESS ANALYSIS & REPORT FOR HRSG-SYSTEMS LAB/LBA10/LBB/C AVAILABLE",5121,"HK1003-Rev.0E-3",TT_Mile,"55902",-,-,-,100,TK_Complete,23/01/2021,23/01/2021,23/01/2021,23/01/2021,"SI--HA-2A55 FS","SI--HA-2A55","SI--HA-2A56 FS","SI--HA-2A56",25,25,25,25,5,5,5,5,3,,"HK1003 -Blackpoint D2 - Rev.0E DD30092021"
1-2239,SI--UMC2B45,"BASIC DESIGN / STEEL COLUMN ANCHORING DWG, STATIC ANALYSIS 20UMC",5121,"HK1003-Rev.0E-3",TT_Task,"55902",-,-,-,100,TK_Complete,24/01/2021,24/01/2021,02/03/2021,02/03/2021,"SP--MB-2-85 FS","SP--MB-2-85","SI20UMC2B40 FF,SI20UMC2B40 FS,SI--UMC2B70 FS,SI--UMC2B78 FS","SI20UMC2B40,SI20UMC2B40,SI--UMC2B70,SI--UMC2B78",25,25,30,30,5,5,7,7,3,,"HK1003 -Blackpoint D2 - Rev.0E DD30092021"
1-2240,SI20UBA3G25,"MANUFACTURING ELECTRICAL MODULES 20UBA7110/20/30",5121,"HK1003-Rev.0E-3",TT_Task,"55902",-,-,-,28,TK_Active,18/08/2021,18/08/2021,18/01/2022,,"SI--UBA2G85 FS,SI--UBA2G85 SS,SI--2222-30 FS","SI--UBA2G85,SI--UBA2G85,SI--2222-30","SI20UBA4-52 FS,SI20UBA3G20# SS,SI20UBA4G50 FS","SI20UBA4-52,SI20UBA3G20#,SI20UBA4G50",54,54,76,,12,12,17,,26,688,"HK1003 -Blackpoint D2 - Rev.0E DD30092021"
1-2241,SI20LCA8M25,"COLD COMMISSIONING MAIN COND. SYSTEM IN MIN. FLOW OPERATION (FOR CHEM. CLEANING) LCA/LCB",5121,"HK1003-Rev.0E-3",TT_Task,"55902",-,-,-,0,TK_NotStart,29/04/2023,,06/05/2023,,"SI20PGB8B25 SS,SI20MAG8-25 FS,SI20GM-8E25 FS,SI20QCB8-25 FS,SI20GM-8B27 FS,SI20B--8-50 FS,SI20CPC8-27 FS,SI20LCA8M10 FS,SI20BBA8-35 SS,SI--2222-37 SS,SI-PM-40 FS","SI20PGB8B25,SI20MAG8-25,SI20GM-8E25,SI20QCB8-25,SI20GM-8B27,SI20B--8-50,SI20CPC8-27,SI20LCA8M10,SI20BBA8-35,SI--2222-37,SI-PM-40","SI--L--8A25# FF,SI--L--8A25# SS,SI20--P6-75 FS","SI--L--8A25#,SI--L--8A25#,SI20--P6-75",143,,144,,33,,33,,96,48,"HK1003 -Blackpoint D2 - Rev.0E DD30092021"
1-2242,SI20EKG6I15,"ERECTION, NDT, PT PIPES - 20EKG",5121,"HK1003-Rev.0E-3",TT_Task,"55902",-,-,-,0,TK_NotStart,05/01/2023,,23/03/2023,,"SI--SG-2-27 FS,SI--SG-2-38 FS,SI20TP-100& SS,SI20EK-6-15 SS,SI20EK-6-19 FS,SI20UMY6M71 FS,SI20UEY6-115 FS","SI--SG-2-27,SI--SG-2-38,SI20TP-100&,SI20EK-6-15,SI20EK-6-19,SI20UMY6M71,SI20UEY6-115","SI20EK-7H15 FF,SI20EK-8H14 FS,SI20EK-8H13 FS,SI20EK-8-10 FS,SI20-6-16# FF,SI20-6-16# SS,SI-P222-80 FS","SI20EK-7H15,SI20EK-8H14,SI20EK-8H13,SI20EK-8-10,SI20-6-16#,SI20-6-16#,SI-P222-80",126,,137,,29,,32,,88,256,"HK1003 -Blackpoint D2 - Rev.0E DD30092021"
1-2243,SI20XKA8-25,"COMMISSIONING EMERGENCY POWER GENERATOR XKA",5121,"HK1003-Rev.0E-3",TT_Task,"55902",-,-,-,0,TK_NotStart,27/05/2023,,02/06/2023,,"SI20XKA8-10 FS,SI20B--8-50 FS,SI20SGM8-42 FS,SI-PM-40 FS,SI20TPM2C8-30 FS","SI20XKA8-10,SI20B--8-50,SI20SGM8-42,SI-PM-40,SI20TPM2C8-30","SI20MB-9-05 FS","SI20MB-9-05",147,,147,,34,,34,,97,168,"HK1003 -Blackpoint D2 - Rev.0E DD30092021"
1-2244,SI20XKA3-80,"(RFS) READY FOR SHIPMENT EMERGENCY DIESEL GEN.SET XKA",5121,"HK1003-Rev.0E-3",TT_FinMile,"55902",-,-,-,0,TK_NotStart,12/06/2022,,12/06/2022,,"SI20XKA4-10 FS","SI20XKA4-10","SI20XKA4-25 FS","SI20XKA4-25",97,,97,,22,,22,,69,535,"HK1003 -Blackpoint D2 - Rev.0E DD30092021"
1-2245,SI20XKA4-25,"TRANSPORT EMERGENCY DIESEL GEN.SET 00XKA",5121,"HK1003-Rev.0E-3",TT_Task,"55902",-,-,-,0,TK_NotStart,12/06/2022,,07/08/2022,,"SI20XKA3-80 FS","SI20XKA3-80","SI20XKA4-40 FS","SI20XKA4-40",97,,105,,22,,24,,69,535,"HK1003 -Blackpoint D2 - Rev.0E DD30092021"
1-2246,SI20BFA8-10,"(TOP-20BFA) LV SWITCHGEAR 20BFA/BMA/BFB",5121,"HK1003-Rev.0E-3",TT_FinMile,"55902",-,-,-,0,TK_NotStart,06/02/2023,,06/02/2023,,"SI20BZP7-160 FS,SI--9998-20& SS,SI20UBA4-42 FS,SI20UBA7-104 FS,SI--B--2-68 FS,SI20UBA7-17 FS,SI20BZK7A28 FS,SI20BZK7A25 FS,SI20BZK7C33 FS,SI20BZK7A28 FF,SI20BZK7B27 FS,SI--B--2-93 FS","SI20BZP7-160,SI--9998-20&,SI20UBA4-42,SI20UBA7-104,SI--B--2-68,SI20UBA7-17,SI20BZK7A28,SI20BZK7A25,SI20BZK7C33,SI20BZK7A28,SI20BZK7B27,SI--B--2-93","SI20BFA8-25 FS","SI20BFA8-25",131,,131,,30,,30,,89,16,"HK1003 -Blackpoint D2 - Rev.0E DD30092021"
1-2247,SI20MKA7-42,"GENERATOR READY FOR BAA CONNECTION 20MKA",5121,"HK1003-Rev.0E-3",TT_Mile,"55902",-,-,-,0,TK_NotStart,20/08/2022,,20/08/2022,,"SI20MB-6-25 FS","SI20MB-6-25","SI20BZK7C25 FS,SI20BAA7-66 FS,SI20BAA7-05 FS","SI20BZK7C25,SI20BAA7-66,SI20BAA7-05",107,,107,,24,,24,,78,968,"HK1003 -Blackpoint D2 - Rev.0E DD30092021"
1-2248,SI20MAG6-14,"PLACING STEAM SHELL (LOWER PART) AND CONNECTION/WELDING TO HOTWELL MAG20",5121,"HK1003-Rev.0E-3",TT_Task,"55902",-,-,-,0,TK_NotStart,30/05/2022,,08/06/2022,,"SI20MAG6-06 FS,SI20MAG6-04 FS,SI20UMC5B49 FS,SI20MAG6-63 FS","SI20MAG6-06,SI20MAG6-04,SI20UMC5B49,SI20MAG6-63","SI20MAG6-16 FS","SI20MAG6-16",95,,96,,22,,22,,67,144,"HK1003 -Blackpoint D2 - Rev.0E DD30092021"
1-2249,SI20MAG6-30,"ASSEMBLING AND WELDING OF NOZZLES INTO THE STEAM DOME MAG20",5121,"HK1003-Rev.0E-3",TT_Task,"55902",-,-,-,0,TK_NotStart,17/07/2022,,23/07/2022,,"SI20MAG6-22 SS,SI20MAG6-26 FS,SI20MAG6-34 FS","SI20MAG6-22,SI20MAG6-26,SI20MAG6-34","SI20MAG6-38 FS,SI20MAG6-62 SS","SI20MAG6-38,SI20MAG6-62",102,,103,,23,,24,,74,184,"HK1003 -Blackpoint D2 - Rev.0E DD30092021"
1-2250,SI20MAG6-42,"FITTING AND BOLTING OF FRONT AND REAR COVER WITH SEAL MAG20",5121,"HK1003-Rev.0E-3",TT_Task,"55902",-,-,-,0,TK_NotStart,27/07/2022,,05/08/2022,,"SI20MAG6-38 FS","SI20MAG6-38","SI20MAG6-56 FS,SI20MAG6-20# FF,SI20MAG6-59 FS,SI20MAG6-39 FS,SI20MAN6-36 FS","SI20MAG6-56,SI20MAG6-20#,SI20MAG6-59,SI20MAG6-39,SI20MAN6-36",103,,104,,24,,24,,75,184,"HK1003 -Blackpoint D2 - Rev.0E DD30092021"
1-2251,SI20MAG6-38,"CHECKING THE CORROSION PROTECTION OF THE COOLING WATER SPACES MAG20",5121,"HK1003-Rev.0E-3",TT_Task,"55902",-,-,-,0,TK_NotStart,24/07/2022,,26/07/2022,,"SI20MAG6-34 FS,SI20MAG6-30 FS","SI20MAG6-34,SI20MAG6-30","SI20MAG6-42 FS,SI20MAG6-48 FS,SI20PAB6A15 FS,SI20MAG6-40 FS","SI20MAG6-42,SI20MAG6-48,SI20PAB6A15,SI20MAG6-40",103,,103,,24,,24,,75,184,"HK1003 -Blackpoint D2 - Rev.0E DD30092021"
1-2252,SI20MAG6-40,"(RFP) READY FOR PIPE CONNECTION CONDENSER - PAB",5121,"HK1003-Rev.0E-3",TT_FinMile,"55902",-,-,-,0,TK_NotStart,19/08/2022,,19/08/2022,,"SI20MAG6-48 FS,SI20MAG6-34 FS,SI20MAG6-38 FS,SI20MAG6-39 FS","SI20MAG6-48,SI20MAG6-34,SI20MAG6-38,SI20MAG6-39","SI20MAG6A15 FF,SI20GM-6H18 FS,SI20UPY6M10 FS,SI20PAB6A15 FS","SI20MAG6A15,SI20GM-6H18,SI20UPY6M10,SI20PAB6A15",106,,106,,24,,24,,78,360,"HK1003 -Blackpoint D2 - Rev.0E DD30092021"
1-2253,SI20MAG6-48,"CIRCULATING WATER SIDE LEAK TEST MAG20",5121,"HK1003-Rev.0E-3",TT_Task,"55902",-,-,-,0,TK_NotStart,13/08/2022,,19/08/2022,,"SI20MAG6-39 FS,SI20MAG6-38 FS","SI20MAG6-39,SI20MAG6-38","SI20MAG6-40 FS","SI20MAG6-40",106,,106,,24,,24,,77,360,"HK1003 -Blackpoint D2 - Rev.0E DD30092021"
1-2254,SI20UBX5B10,"(HS) START ERECTION STEEL STRUCTURE 20UBX/20UBG",5121,"HK1003-Rev.0E-3",TT_Mile,"55902",-,-,-,0,TK_NotStart,10/07/2022,,10/07/2022,,"SI20UBX3B26 FS,SI20UBX5-45 FS,SI20MBJ7-11 FS","SI20UBX3B26,SI20UBX5-45,SI20MBJ7-11","SI20UBX5B15 FS","SI20UBX5B15",101,,101,,23,,23,,73,640,"HK1003 -Blackpoint D2 - Rev.0E DD30092021"
1-2255,SI20UBX5B45,"(RFE) STEEL STRUCTURE 20UBX/20UBG",5121,"HK1003-Rev.0E-3",TT_FinMile,"55902",-,-,-,0,TK_NotStart,23/07/2022,,23/07/2022,,"SI20UBX5B15 FS","SI20UBX5B15","SI20UBX5C10 FS,SI20BAA7-15 FS,SI20BAC7-15 FS,SI20BZP7-80 FS,SI20BAA7-05 FS,SI20M--7A16 FS","SI20UBX5C10,SI20BAA7-15,SI20BAC7-15,SI20BZP7-80,SI20BAA7-05,SI20M--7A16",103,,103,,24,,24,,74,640,"HK1003 -Blackpoint D2 - Rev.0E DD30092021"
1-2256,SI20CFE7-16,"ERECTION CONTINIOUS EMISSION MONITORING SYSTEM HRSG20",5121,"HK1003-Rev.0E-3",TT_Task,"55902",-,-,-,0,TK_NotStart,14/07/2022,,27/07/2022,,"SI20CFE4-40 FS","SI20CFE4-40","SI20CFE8-13 FS,SI20CFE7A25 FS,SI20TPI17A7-20 FS","SI20CFE8-13,SI20CFE7A25,SI20TPI17A7-20",101,,103,,23,,24,,73,2256,"HK1003 -Blackpoint D2 - Rev.0E DD30092021"
1-2257,SI20GHC7H17,"ERECTION, NDT, PT / VALVES DEMIN WATER 20GHC IN UHY (UNDER HRSG INLET DUCT)",5121,"HK1003-Rev.0E-3",TT_Task,"55902",-,-,-,0,TK_NotStart,17/11/2022,,30/11/2022,,"SI20GHC6H17 FS,SI20BZP7D18 FS,SI20BZP7D19 FS,SI20BZP7-5 FS,SI20BZP7-196 FS,SI20BZP7-174 FS,SI20UMY6M10 FS,SI20UMY6M11 FS,SI20UMY6M12 FS,SI--2227-68 FS,SI--BZP2-05 FS,SI--PEE7-20 FS,SI--BZP4B40 FS","SI20GHC6H17,SI20BZP7D18,SI20BZP7D19,SI20BZP7-5,SI20BZP7-196,SI20BZP7-174,SI20UMY6M10,SI20UMY6M11,SI20UMY6M12,SI--2227-68,SI--BZP2-05,SI--PEE7-20,SI--BZP4B40","SI20GHC8H25 FS,SI20GHC6H15 FF,SI20-6-16# FF,SI20-6-16# SS","SI20GHC8H25,SI20GHC6H15,SI20-6-16#,SI20-6-16#",119,,121,,27,,28,,85,1072,"HK1003 -Blackpoint D2 - Rev.0E DD30092021"
1-2258,SI20UBA2G03,"E-AND I&C- MANUALS FOR COMP.INSTALL.AVAILABLE ELECTRICAL MODULES 20UBA7110/20/30",5121,"HK1003-Rev.0E-3",TT_Mile,"55902",-,-,-,0,TK_NotStart,22/12/2021,,22/12/2021,,"SI--UBA2G85 FS","SI--UBA2G85","SI20UBA3E57 FS","SI20UBA3E57",72,,72,,16,,16,,43,688,"HK1003 -Blackpoint D2 - Rev.0E DD30092021"
1-2259,SI20MAG8-25,"COLD COMMISSIONING CONDENSING/ ST DRAIN SYSTEM MAG/MAL",5121,"HK1003-Rev.0E-3",TT_Task,"55902",-,-,-,0,TK_NotStart,26/04/2023,,28/04/2023,,"SI20CPB8-25 FS,SI20BFG8-50 FS,SI-PM-40 FS,SI20B--8-50 FS,SI20MA-8-25 SS","SI20CPB8-25,SI20BFG8-50,SI-PM-40,SI20B--8-50,SI20MA-8-25","SI20LCA8M25 FS","SI20LCA8M25",142,,142,,33,,33,,96,48,"HK1003 -Blackpoint D2 - Rev.0E DD30092021"
1-2260,SI20MA-6-14&,"START CHEMICAL CLEANING",5121,"HK1003-Rev.0E-3",TT_Mile,"55902",-,-,-,0,TK_NotStart,13/05/2023,,13/05/2023,,"","","SI20--P6-75 SS","SI20--P6-75",145,,145,,33,,33,,97,0,"HK1003 -Blackpoint D2 - Rev.0E DD30092021"
1-2261,SI--BFT2-75,"RFQ LV-TRANSFORMERS LV-TRANSFORMERS BFT",5121,"HK1003-Rev.0E-3",TT_Mile,"55902",-,-,-,100,TK_Complete,30/07/2021,30/07/2021,30/07/2021,30/07/2021,"SI--BFT2-15 FS","SI--BFT2-15","SI--BFT2-80 FS","SI--BFT2-80",51,51,51,51,12,12,12,12,23,,"HK1003 -Blackpoint D2 - Rev.0E DD30092021"
1-2262,SI20LBA6H15,"ERECTION, NDT PIPE / VALVES 10LBA10 (BOP)",5121,"HK1003-Rev.0E-3",TT_Task,"55902",-,-,-,0,TK_NotStart,24/08/2022,,16/12/2022,,"SI20MAN6E40 FF,SI---1P6A05 FS,SI20MA-6A35 FS","SI20MAN6E40,SI---1P6A05,SI20MA-6A35","SI20--P6-73 FS,SI20QC-6H17 FF,SI20LAC8B25 FS,SI20QU-6H15 FF,SI20LBA6H70 FS,SI20--P6-77 FS,SI20LBA6J15 SS,SI20-6-16# FF,SI20-6-16# SS","SI20--P6-73,SI20QC-6H17,SI20LAC8B25,SI20QU-6H15,SI20LBA6H70,SI20--P6-77,SI20LBA6J15,SI20-6-16#,SI20-6-16#",107,,123,,25,,28,,78,584,"HK1003 -Blackpoint D2 - Rev.0E DD30092021"
1-2263,SI--3335-62,"SSM OFFICE ERECTION",5121,"HK1003-Rev.0E-3",TT_Task,"55902",-,-,-,100,TK_Complete,01/05/2021,01/05/2021,08/06/2021,08/06/2021,"SI-----1-05 SS,SI--5552-85 FS","SI-----1-05,SI--5552-85","SI--3335-65 FF","SI--3335-65",39,39,44,44,9,9,10,10,10,,"HK1003 -Blackpoint D2 - Rev.0E DD30092021"
1-2264,SI--3335-65,"CONSTRUCTION OF SIEMENS SITE CONTRACTOR OFFICE AREA",5121,"HK1003-Rev.0E-3",TT_Task,"55902",-,-,-,100,TK_Complete,01/07/2021,01/07/2021,27/10/2021,28/09/2021,"SI--3335-62 FF,SI--5555-15 FF,SI-----5-20 SS,SI--3332-60 FS","SI--3335-62,SI--5555-15,SI-----5-20,SI--3332-60","SI20MB-6-00 SS,SI20MA-6B00 SS,SI20MBR6-15 SS,SI20MA-6-03 SS,SI20MAW6-16 SS,SI20MAV6-15 SS,SI--2226-66 SS","SI20MB-6-00,SI20MA-6B00,SI20MBR6-15,SI20MA-6-03,SI20MAW6-16,SI20MAV6-15,SI--2226-66",47,47,64,60,11,11,15,14,19,,"HK1003 -Blackpoint D2 - Rev.0E DD30092021"
1-2265,SI20CR-8-10,"(TOP-00CR) CONTROL ROOM EQUIPMENT",5121,"HK1003-Rev.0E-3",TT_FinMile,"55902",-,-,-,0,TK_NotStart,20/02/2023,,20/02/2023,,"SI--9998-20& SS,SI20UCA7-15 FS,SI--PEI7-20 FS,SI20UEY5-45 FS,SI--B--2-68 FS,SI20UBA7-104 FS,SI20BZK4-41 FS,SI20BZK7-25 FS,SI20UBA7-17 SS,SI--B--7-55 FS,SI--B--2-93 FS","SI--9998-20&,SI20UCA7-15,SI--PEI7-20,SI20UEY5-45,SI--B--2-68,SI20UBA7-104,SI20BZK4-41,SI20BZK7-25,SI20UBA7-17,SI--B--7-55,SI--B--2-93","SI20CPD8-11 SS,SI20CR-8-25 FS","SI20CPD8-11,SI20CR-8-25",133,,133,,31,,31,,91,16,"HK1003 -Blackpoint D2 - Rev.0E DD30092021"
1-2266,SI20HA-6-70&,"HRSG20 - READY FOR HOT GAS",5121,"HK1003-Rev.0E-3",TT_FinMile,"55902",-,-,-,0,TK_NotStart,22/06/2023,,22/06/2023,,"SI20HA-8-65 FS","SI20HA-8-65","SI20MB-9-15 FS","SI20MB-9-15",150,,150,,35,,35,,99,64,"HK1003 -Blackpoint D2 - Rev.0E DD30092021"
1-2267,SI20UBA2H02,"E-AND I&C- MANUALS FOR COMP.INSTALL.AVAILABLE ELECTRICAL MODULES 20UBA7310/30",5121,"HK1003-Rev.0E-3",TT_Mile,"55902",-,-,-,0,TK_NotStart,21/10/2021,,21/10/2021,,"SI--UBA2G85 FS","SI--UBA2G85","SI20UBA3H55 FS","SI20UBA3H55",63,,63,,14,,14,,35,592,"HK1003 -Blackpoint D2 - Rev.0E DD30092021"
1-2268,SI20UBA3H55,"INSTALL. COMP., INT. CABLING, FIRE PROT., SHOP TEST ELECTRICAL MODULES 20UBA7310/30",5121,"HK1003-Rev.0E-3",TT_Task,"55902",-,-,-,0,TK_NotStart,19/11/2021,,27/01/2022,,"SI20UBA4-51 FS,SI20UBA2H02 FS,SP--B--2-13 FS,SI20UBA4G57 FS","SI20UBA4-51,SI20UBA2H02,SP--B--2-13,SI20UBA4G57","SI20UBA3B78 FS,SI20UBA3H20# FF,SI20UBA4G60 FS,SI-P222-167 SS,SI--C--2-55 FS","SI20UBA3B78,SI20UBA3H20#,SI20UBA4G60,SI-P222-167,SI--C--2-55",67,,77,,15,,18,,39,584,"HK1003 -Blackpoint D2 - Rev.0E DD30092021"
1-2269,SI20BBT8-25,"COMMISSIONING AUX. TRANSFORMER 20BBT01",5121,"HK1003-Rev.0E-3",TT_Task,"55902",-,-,-,0,TK_NotStart,07/03/2023,,13/03/2023,,"SI20BAT8-10 FS,SI20BFA8-25 FS,SI20BBA8-36 SS,SI-PM-40 FS,SI20BAT8-25 FS,SI20BUK8-50 FS","SI20BAT8-10,SI20BFA8-25,SI20BBA8-36,SI-PM-40,SI20BAT8-25,SI20BUK8-50","SI20CHA8-25 FS,SI20B--8-50 FS,SI20CH-8A25 FS,SI20UBA8G25 SS","SI20CHA8-25,SI20B--8-50,SI20CH-8A25,SI20UBA8G25",135,,136,,31,,31,,92,16,"HK1003 -Blackpoint D2 - Rev.0E DD30092021"
1-2270,SI20BBT4-25,"TRANSPORT AUX. TRANSFORMER 20BBT",5121,"HK1003-Rev.0E-3",TT_Task,"55902",-,-,-,0,TK_NotStart,21/07/2022,,19/08/2022,,"SI--LOG4-30 FS,SI20BBT3B80 FS,SI20BAT4-25 SS","SI--LOG4-30,SI20BBT3B80,SI20BAT4-25","SI20BBT7-15 FS,SI20BBT4-40 FS","SI20BBT7-15,SI20BBT4-40",102,,106,,23,,24,,74,584,"HK1003 -Blackpoint D2 - Rev.0E DD30092021"
1-2271,SI20PAA2-62,"(DF) INPUT FOR MS3 COOLING TOWER COARSE SCREEN 20PAA (MPA)",5121,"HK1003-Rev.0E-3",TT_FinMile,"55902",-,-,-,100,TK_Complete,06/05/2021,06/05/2021,06/05/2021,06/05/2021,"SI--PAC2B85 FS","SI--PAC2B85","SI--URD2-60 FS","SI--URD2-60",39,39,39,39,9,9,9,9,11,,"HK1003 -Blackpoint D2 - Rev.0E DD30092021"
1-2272,SI20UTG5-74,"(H) START PLACING FORMWORK 20UTG07",5121,"HK1003-Rev.0E-3",TT_Mile,"55902",-,-,-,0,TK_NotStart,17/04/2022,,17/04/2022,,"SI-----5-21& FS,SI20UTG2-92 FS,SI20UTG5-70.01 FS,SI20UTG5-70 SS","SI-----5-21&,SI20UTG2-92,SI20UTG5-70.01,SI20UTG5-70","SI20UTG5-72.00 FS","SI20UTG5-72.00",89,,89,,20,,20,,58,2120,"HK1003 -Blackpoint D2 - Rev.0E DD30092021"
1-2273,SI20SGC8-25,"COLD COMMISSIONING SPRAY DELUGE SYSTEM UNDER ELECTRICAL MODULES 20UBA76xx/77xx/7410/73xx/7210/7110 20SGC",5121,"HK1003-Rev.0E-3",TT_Task,"55902",-,-,-,0,TK_NotStart,14/02/2023,,20/02/2023,,"SI20SGC6J15 FS,SI-PM-40 FS,SI20UBA8G27 SS","SI20SGC6J15,SI-PM-40,SI20UBA8G27","SI20B--8-50 FS,SI20SGM8-25 SS","SI20B--8-50,SI20SGM8-25",132,,133,,30,,31,,90,408,"HK1003 -Blackpoint D2 - Rev.0E DD30092021"
1-2274,SI20M--7A15,"ELECTRICAL ERECTION FOR MKC01/MBJ01",5121,"HK1003-Rev.0E-3",TT_Task,"55902",-,-,-,0,TK_NotStart,11/07/2022,,28/08/2022,,"SI20MBJ7-10 FS,SI20MBJ7-11 FF","SI20MBJ7-10,SI20MBJ7-11","SI20M--8-25 FS,SI20BZK7D11# FF,SI20BZK7D11# SS,SI20BFT8-79 FS","SI20M--8-25,SI20BZK7D11#,SI20BZK7D11#,SI20BFT8-79",101,,108,,23,,25,,73,1704,"HK1003 -Blackpoint D2 - Rev.0E DD30092021"
1-2275,SI--BAW2-74,"TENDER BOQ IN- / OUTDOOR GROUNDING",5121,"HK1003-Rev.0E-3",TT_Mile,"55902",-,-,-,0,TK_NotStart,01/12/2021,,01/12/2021,,"SI--BZP2-92 FS,SI--BAW2-13 FS","SI--BZP2-92,SI--BAW2-13","SI--BAW2-75 SS","SI--BAW2-75",69,,69,,16,,16,,40,1560,"HK1003 -Blackpoint D2 - Rev.0E DD30092021"
1-2276,SI20HB-4A41,"(OTD-OS) ON SITE MAIN STEEL STRUCTURE HRSG20 (FRAME / CASING)",5121,"HK1003-Rev.0E-3",TT_FinMile,"55902",-,-,-,0,TK_NotStart,06/01/2022,,06/01/2022,,"SI20HB-4A26 FS","SI20HB-4A26","SI20HA-6-20 FS,SI20HB-6A17 FS,SI20HA-6-56 FS,SI20HB-6C28 FS","SI20HA-6-20,SI20HB-6A17,SI20HA-6-56,SI20HB-6C28",74,,74,,17,,17,,44,136,"HK1003 -Blackpoint D2 - Rev.0E DD30092021"
1-2277,SI20HB-3A81,"(RFS) READY FOR SHIPMENT MAIN STEEL STRUCTURE HRSG20 (Incl. Installation Material)",5121,"HK1003-Rev.0E-3",TT_FinMile,"55902",-,-,-,0,TK_NotStart,02/12/2021,,02/12/2021,,"SI20HB-4B10 FS","SI20HB-4B10","SI20HB-4A26 FS,SI--HB-2B05 FS","SI20HB-4A26,SI--HB-2B05",69,,69,,16,,16,,40,136,"HK1003 -Blackpoint D2 - Rev.0E DD30092021"
1-2278,SI20UBA4H25,"TRANSPORT ELECTRICAL MODULES 20UBA7910/20",5121,"HK1003-Rev.0E-3",TT_Task,"55902",-,-,-,0,TK_NotStart,03/06/2022,,28/07/2022,,"SP20UBA3H80 FS","SP20UBA3H80","SI--CKA4-25 FS,SI20UBA4B40 FS","SI--CKA4-25,SI20UBA4B40",95,,103,,22,,24,,68,584,"HK1003 -Blackpoint D2 - Rev.0E DD30092021"
1-2279,SI20MAW4-25,"TRANSPORT GLAND STEAM CONDENSER 20MAW",5121,"HK1003-Rev.0E-3",TT_Task,"55902",-,-,-,0,TK_NotStart,30/04/2022,,24/06/2022,,"SP20MAW3-80 FS","SP20MAW3-80","SI20MAW4-40 FS","SI20MAW4-40",91,,98,,21,,23,,60,664,"HK1003 -Blackpoint D2 - Rev.0E DD30092021"
1-2280,SI20UBF5B45,"(RFE) STEEL STRUCTURE 20UBE/UBF",5121,"HK1003-Rev.0E-3",TT_FinMile,"55902",-,-,-,0,TK_NotStart,13/05/2022,,13/05/2022,,"SI20UBF5B15 FS","SI20UBF5B15","SI20BAT8-10 FS,SI20ACA7-65 FS,SI20BAT4-10 FS,SI20UBL5C-30 FS,SI-P222-78 FS","SI20BAT8-10,SI20ACA7-65,SI20BAT4-10,SI20UBL5C-30,SI-P222-78",92,,92,,21,,21,,64,880,"HK1003 -Blackpoint D2 - Rev.0E DD30092021"
1-2281,SI20LBF6H47,"ASSEMBLY / ERECTION, BYPASS STATION 20LBF",5121,"HK1003-Rev.0E-3",TT_Task,"55902",-,-,-,0,TK_NotStart,04/09/2022,,01/10/2022,,"SI20HA-6-40 FS,SI20LBF4B40 FS,SI20MA-6-30 FS,SI20MA-6-35 FS,SI20MA-6B04 FS,SI20MA-6B36 FF,SI20MAN6-15 FF","SI20HA-6-40,SI20LBF4B40,SI20MA-6-30,SI20MA-6-35,SI20MA-6B04,SI20MA-6B36,SI20MAN6-15","SI20LBB6J15 FF,SI20HAD8E10 FS,SI11LBA6H71 FS","SI20LBB6J15,SI20HAD8E10,SI11LBA6H71",109,,113,,25,,26,,80,864,"HK1003 -Blackpoint D2 - Rev.0E DD30092021"
1-2282,SI20QCB8-10,"(TOP-20QCB) CARBOHYDRAZIDE DOSING SYSTEM FOR CCW",5121,"HK1003-Rev.0E-3",TT_FinMile,"55902",-,-,-,0,TK_NotStart,10/04/2023,,10/04/2023,,"SI20QC-6H15 FS,SI20QC-7-15 FS,SI20QC-6H17 FS,SI--9998-23& FS,SI20TPM10A8-30 FS","SI20QC-6H15,SI20QC-7-15,SI20QC-6H17,SI--9998-23&,SI20TPM10A8-30","SI20QCB8-25 FS,SI20QC-8-25 FS","SI20QCB8-25,SI20QC-8-25",140,,140,,32,,32,,94,16,"HK1003 -Blackpoint D2 - Rev.0E DD30092021"
1-2283,SI20HA-8-35,"FINAL COLD COMMISSIONING HRSG 20HAD/LBH",5121,"HK1003-Rev.0E-3",TT_Task,"55902",-,-,-,0,TK_NotStart,11/06/2023,,17/06/2023,,"SI20HA-8-25 FS,SI20--P6-75 FS,SI20L--6A80 SS","SI20HA-8-25,SI20--P6-75,SI20L--6A80","SI20--P8A25# SS,SI--C--8-58 FS","SI20--P8A25#,SI--C--8-58",149,,150,,34,,35,,98,8,"HK1003 -Blackpoint D2 - Rev.0E DD30092021"
1-2284,SI20HA-8-25,"COLD COMMISSIONING DISTRIBUTION PANEL HRSG 20HA",5121,"HK1003-Rev.0E-3",TT_Task,"55902",-,-,-,0,TK_NotStart,18/04/2023,,24/04/2023,,"SI20UBA8-60 FS,SI20BF-8-25 SS,SI20CPC8-25 FS,SI20BZK7-190 FS,SI-PM-40 FS","SI20UBA8-60,SI20BF-8-25,SI20CPC8-25,SI20BZK7-190,SI-PM-40","SI20HA-8-35 FS,SI20CFE8-36 FS","SI20HA-8-35,SI20CFE8-36",141,,142,,33,,33,,95,384,"HK1003 -Blackpoint D2 - Rev.0E DD30092021"
1-2285,SI20BFT8-75,"ENERGISING LV-TRANSFORMERS 20BFT01",5121,"HK1003-Rev.0E-3",TT_Mile,"55902",-,-,-,0,TK_NotStart,07/03/2023,,07/03/2023,,"SI20BFT8-25 FS","SI20BFT8-25","SI20BF-8-25 FS","SI20BF-8-25",135,,135,,31,,31,,92,392,"HK1003 -Blackpoint D2 - Rev.0E DD30092021"
1-2286,SI20BFT8-25,"COMMISSIONING LV-TRANSFORMERS 20BFT01",5121,"HK1003-Rev.0E-3",TT_Task,"55902",-,-,-,0,TK_NotStart,21/02/2023,,06/03/2023,,"SI20BFT8-10 FS,SI20SGC8-32 FS,SI-PM-40 FS,SI20BUK8-50 FS,SI20BBA8-36 SS","SI20BFT8-10,SI20SGC8-32,SI-PM-40,SI20BUK8-50,SI20BBA8-36","SI20BFT8-75 FS","SI20BFT8-75",133,,135,,31,,31,,91,392,"HK1003 -Blackpoint D2 - Rev.0E DD30092021"
1-2287,SI20MAV6-40,"(RFP) READY FOR PIPE CONNECTION LUBE OIL MODUL MAV",5121,"HK1003-Rev.0E-3",TT_FinMile,"55902",-,-,-,0,TK_NotStart,10/08/2022,,10/08/2022,,"SI20MAV6-15 SS","SI20MAV6-15","SI20MAV6H15 FS","SI20MAV6H15",105,,105,,24,,24,,77,472,"HK1003 -Blackpoint D2 - Rev.0E DD30092021"
1-2288,SI20PAH7-25,"E- AND I&C-ERECTION CONDENSER TUBE CLEANING SYSTEM 20PAH",5121,"HK1003-Rev.0E-3",TT_Task,"55902",-,-,-,0,TK_NotStart,06/11/2022,,19/11/2022,,"SI20BZK7E25 SS,SI20PAH6-15 FF,SI20PCB7M15 FS","SI20BZK7E25,SI20PAH6-15,SI20PCB7M15","SI20PAH8-25 FS,SI20BZK7D10# FF,SI20BZK7D10# SS,SI20BZK7D11# FF,SI20BZK7D11# SS","SI20PAH8-25,SI20BZK7D10#,SI20BZK7D10#,SI20BZK7D11#,SI20BZK7D11#",118,,120,,27,,28,,85,1448,"HK1003 -Blackpoint D2 - Rev.0E DD30092021"
1-2289,SI20LBA8J10,"(TOP-20LBA80) LP MAIN STEAM SYSTEM",5121,"HK1003-Rev.0E-3",TT_FinMile,"55902",-,-,-,0,TK_NotStart,17/04/2023,,17/04/2023,,"SI20LBB7J15 FS,SI20LBB6J47 FS,SI20LBB6J49 FS,SI20LBG7A15 FS,SI20LBG6A45 FS,SI20LBB7J17 FS,SI20LBG6A47 FS,SI20LBB6J73 FS,SI20LBA6H70 FS,SI20LBA6H45 FS,SI20LBG7A17 FS,SI20LBG7C15 FS,SI20LBG6A17 FS,SI20LBG6A15 FS,SI20LBA7H15 FS,SI--9998-21& SS,SI20BZK7E25 FS,SI20LBA7J15 FS,SI20LBA6J70 FS,SI20LBA6J45 FS,SI20LBA6H45 FF,SI20LBA7H15 FF,SI20LBA7H16 FS,SI20LBA6J72 FS,SI20LBA6J73 FS,SI20LBA7J16 FS","SI20LBB7J15,SI20LBB6J47,SI20LBB6J49,SI20LBG7A15,SI20LBG6A45,SI20LBB7J17,SI20LBG6A47,SI20LBB6J73,SI20LBA6H70,SI20LBA6H45,SI20LBG7A17,SI20LBG7C15,SI20LBG6A17,SI20LBG6A15,SI20LBA7H15,SI--9998-21&,SI20BZK7E25,SI20LBA7J15,SI20LBA6J70,SI20LBA6J45,SI20LBA6H45,SI20LBA7H15,SI20LBA7H16,SI20LBA6J72,SI20LBA6J73,SI20LBA7J16","SI20LBA8J25 FS","SI20LBA8J25",141,,141,,32,,32,,95,56,"HK1003 -Blackpoint D2 - Rev.0E DD30092021"
1-2290,SI20BFT7-15,"ERECTION LV-TRANSFORMERS 20BFT01/02",5121,"HK1003-Rev.0E-3",TT_Task,"55902",-,-,-,0,TK_NotStart,26/07/2022,,15/08/2022,,"SI--BFT2-05 FS,SI--2227-68 FS,SI20UBD5-45 FS,SI20BFT4-40 FS,SI20UBD5C-51 FS,SI20UBA7-102 FS,SI20UBA7-34 FS,SI20BFT7-16 FS","SI--BFT2-05,SI--2227-68,SI20UBD5-45,SI20BFT4-40,SI20UBD5C-51,SI20UBA7-102,SI20UBA7-34,SI20BFT7-16","SI20BFT8-10 FS,SI20SGC6J22 FS,SI20SGY7A18 FS,SI20BZK7A28 SS,SI20BZK7D11# FF,SI20BZK7D11# SS,SI20BFT8-78 FS","SI20BFT8-10,SI20SGC6J22,SI20SGY7A18,SI20BZK7A28,SI20BZK7D11#,SI20BZK7D11#,SI20BFT8-78",103,,106,,24,,24,,75,816,"HK1003 -Blackpoint D2 - Rev.0E DD30092021"
1-2291,SI20SGY6-15,"ERECTION FIRE FIGTHING SYSTEM 20SGA",5121,"HK1003-Rev.0E-3",TT_Task,"55902",-,-,-,0,TK_NotStart,15/08/2022,,11/09/2022,,"SI20UMC5C55 FS,SI20UMC5D40 FS,SI-P222-65 FS","SI20UMC5C55,SI20UMC5D40,SI-P222-65","SI20SGA8-10 FS","SI20SGA8-10",106,,110,,24,,25,,77,2168,"HK1003 -Blackpoint D2 - Rev.0E DD30092021"
1-2292,SI20MAJ7B15,"ELECTRICAL ERECTION VACUUM PUMP UNIT MAJ",5121,"HK1003-Rev.0E-3",TT_Task,"55902",-,-,-,0,TK_NotStart,14/12/2022,,27/12/2022,,"SI20MAJ6-15 FS,SI20BZP7-110 SS,SI20BZK7C33 FF,SI20BZK7C33 SS","SI20MAJ6-15,SI20BZP7-110,SI20BZK7C33,SI20BZK7C33","SI20MAJ8-10 FS,SI20BZK7D11# FF,SI20BZK7D11# SS","SI20MAJ8-10,SI20BZK7D11#,SI20BZK7D11#",123,,125,,28,,29,,87,640,"HK1003 -Blackpoint D2 - Rev.0E DD30092021"
1-2293,SI20MAX7-15,"ELECTRICAL ERECTION HYDRAULIC SYSTEM MAX",5121,"HK1003-Rev.0E-3",TT_Task,"55902",-,-,-,0,TK_NotStart,28/12/2022,,10/01/2023,,"SI20BZK7C33 FF,SI20BZP7-110 SS,SI20BZK7C33 SS,SI20MAX6-15 FF,SI20MAW7-15 FS","SI20BZK7C33,SI20BZP7-110,SI20BZK7C33,SI20MAX6-15,SI20MAW7-15","SI20MAX8-10 FS,SI20BZK7D11# FF,SI20BZK7D11# SS","SI20MAX8-10,SI20BZK7D11#,SI20BZK7D11#",125,,127,,29,,29,,88,752,"HK1003 -Blackpoint D2 - Rev.0E DD30092021"
1-2294,SI20HB-6-43,"ERECTION STACK HRSG20_1st part",5121,"HK1003-Rev.0E-3",TT_Task,"55902",-,-,-,0,TK_NotStart,30/06/2022,,06/07/2022,,"SI20HB-6-41 FS,SI20HB-6-51 FS","SI20HB-6-41,SI20HB-6-51","SI20HB-6-45 FS,SI20HB-8-12 FS,SI20BZK7-130 FS,SI20HB-8-25 FS,SI20HB-6-49 FS","SI20HB-6-45,SI20HB-8-12,SI20BZK7-130,SI20HB-8-25,SI20HB-6-49",99,,100,,23,,23,,71,1696,"HK1003 -Blackpoint D2 - Rev.0E DD30092021"
1-2295,SI20LBB6J73,"PT, RE-INSTALLATION PIPES / VALVES LBB-LBC80",5121,"HK1003-Rev.0E-3",TT_Task,"55902",-,-,-,0,TK_NotStart,19/02/2023,,03/03/2023,,"SI20MAX8-70 FF,SI20LBB6J15 FS,SI20LBB6J17 FS","SI20MAX8-70,SI20LBB6J15,SI20LBB6J17","SI20LBA8J10 FS,SI20LBA8H10 FS,SI20LBG8A10 FS,SI20LBB6J49 FS,SI20LBB8J11 FS,SI20LBB6J47 FS,SI20UMY6M70 FF","SI20LBA8J10,SI20LBA8H10,SI20LBG8A10,SI20LBB6J49,SI20LBB8J11,SI20LBB6J47,SI20UMY6M70",133,,134,,31,,31,,91,136,"HK1003 -Blackpoint D2 - Rev.0E DD30092021"
1-2296,SI20LAC6B16,"ERECTION OF NOISE ENCLOSURE FEEDWATER PUMPS 20LAC",5121,"HK1003-Rev.0E-3",TT_Task,"55902",-,-,-,0,TK_NotStart,18/08/2022,,26/10/2022,,"SI20LAC6B15 FS,SI20LAC7B15 FF","SI20LAC6B15,SI20LAC7B15","SI20LAC6B18 SS,SI20LAC8B10 FS,SI20SGY7A27 FS,SI20SGC6J27 FS","SI20LAC6B18,SI20LAC8B10,SI20SGY7A27,SI20SGC6J27",106,,116,,24,,27,,78,240,"HK1003 -Blackpoint D2 - Rev.0E DD30092021"
1-2297,SI--LCB2B80,"QUOTATION STAGE CONDENSATE EXTRACTION PUMP LCB",5121,"HK1003-Rev.0E-3",TT_Task,"55902",-,-,-,100,TK_Complete,05/02/2021,05/02/2021,08/04/2021,08/04/2021,"SI--LCB2B75 FS,SI--3332-76 FS","SI--LCB2B75,SI--3332-76","SI--LCB2B85 FS","SI--LCB2B85",26,26,35,35,6,6,8,8,4,,"HK1003 -Blackpoint D2 - Rev.0E DD30092021"
1-2298,SI--LCB2B65,"(DF) INPUT FOR M2 CONDENSATE EXTRACTION PUMPS LCB",5121,"HK1003-Rev.0E-3",TT_FinMile,"55902",-,-,-,100,TK_Complete,21/05/2021,21/05/2021,21/05/2021,21/05/2021,"SI--LCB2B85 FS","SI--LCB2B85","SI---1P2A10 FS","SI---1P2A10",41,41,41,41,9,9,9,9,13,,"HK1003 -Blackpoint D2 - Rev.0E DD30092021"
1-2299,SI20MA-6C00,"CLEANING K-TURBINE AND PREPARATION OF ASSEMBLY MA",5121,"HK1003-Rev.0E-3",TT_Task,"55902",-,-,-,0,TK_NotStart,31/07/2022,,03/08/2022,,"SI20MA-6B00 FS,SI20MA-4-40 FS","SI20MA-6B00,SI20MA-4-40","SI20MA-6C11 FS,SI20MA-6C15 FS,SI20MA-6A10 FS","SI20MA-6C11,SI20MA-6C15,SI20MA-6A10",104,,104,,24,,24,,76,96,"HK1003 -Blackpoint D2 - Rev.0E DD30092021"
1-2300,SI20MAJ6-25,"PLACING, ALIGNMENT AND GROUTING MAJ-SKID (VACUUM-PUMPS)",5121,"HK1003-Rev.0E-3",TT_Task,"55902",-,-,-,0,TK_NotStart,02/06/2022,,04/06/2022,,"SI20MAG6-06 FS,SI20MAG6-04 FS,SI20MAJ4-40 FS,SI20UMC5E47 FS","SI20MAG6-06,SI20MAG6-04,SI20MAJ4-40,SI20UMC5E47","SI20MAJ6-15 FS,SI20UMC5E73 FS","SI20MAJ6-15,SI20UMC5E73",95,,96,,22,,22,,68,1000,"HK1003 -Blackpoint D2 - Rev.0E DD30092021"
1-2301,SI--UBA2G85,"CONTRACT INTO FORCE ELECTRICAL MODULES UBA (all)",5121,"HK1003-Rev.0E-3",TT_Mile,"55902",-,-,-,100,TK_Complete,18/05/2021,18/05/2021,18/05/2021,18/05/2021,"SI--3332-76 SS,SI--UBA2G80 FS,SI--3332-76 FS","SI--3332-76,SI--UBA2G80,SI--3332-76","SI20UBA3H25 FS,SP20UBA3H25 FS,SI20UBA3K25 FS,SI20UBA3G25 FS,SI20UBA3J25 FS,SI--UBA2K60 FS,SP--CJT2-85 FS,SP--CJT2-86 FS,SI--CHY2-85 FS,SI20BUK2-85 FS,SI20BTA2-85 FS,SI20BFC2Z85 FS,SI20BFA2-85 FS,SI--BBA2-85 FS,SI20UBA3G25 SS,SI20UBA3H25 SS,SI20UBA3G81 SS,SI20UBA3J25 SS,SI20UBA3G84 SS,SI20UBA3K25 SS,SI20UBA3C5 SS,SI20BZK7-25 FS,SI20UBA2G03 FS,SI20UBA2G76 FS,SI20UBA2G77 FS,SI20UBA2H02 FS,SI20UBA2J81 FS,SI20UBA2K3 FS,SI20UBA2K2 FS,SI20UBA3H56 FS,SI20UBA2H2 FS","SI20UBA3H25,SP20UBA3H25,SI20UBA3K25,SI20UBA3G25,SI20UBA3J25,SI--UBA2K60,SP--CJT2-85,SP--CJT2-86,SI--CHY2-85,SI20BUK2-85,SI20BTA2-85,SI20BFC2Z85,SI20BFA2-85,SI--BBA2-85,SI20UBA3G25,SI20UBA3H25,SI20UBA3G81,SI20UBA3J25,SI20UBA3G84,SI20UBA3K25,SI20UBA3C5,SI20BZK7-25,SI20UBA2G03,SI20UBA2G76,SI20UBA2G77,SI20UBA2H02,SI20UBA2J81,SI20UBA2K3,SI20UBA2K2,SI20UBA3H56,SI20UBA2H2",41,41,41,41,9,9,9,9,13,,"HK1003 -Blackpoint D2 - Rev.0E DD30092021"
1-2302,SI--UBA2G75,"RFQ ELECTRICAL MODULES UBA",5121,"HK1003-Rev.0E-3",TT_Mile,"55902",-,-,-,100,TK_Complete,01/03/2021,01/03/2021,01/03/2021,01/03/2021,"SI--UBA2G15 FS,SI--3332-27 FS,SI--3332-26 FS","SI--UBA2G15,SI--3332-27,SI--3332-26","SI--UBA2G80 FS","SI--UBA2G80",30,30,30,30,7,7,7,7,5,,"HK1003 -Blackpoint D2 - Rev.0E DD30092021"
1-2303,SI20MBP8-10,"(TOP-20MBP) GT FUEL GAS SYSTEM",5121,"HK1003-Rev.0E-3",TT_FinMile,"55902",-,-,-,0,TK_NotStart,27/04/2023,,27/04/2023,,"SP20MB-4A40 FS,SI20MBA6F15 FS,SI20MBA6A15 FS,SI20MBA6-40 FS,SI20MBQ7H15 FS,SI20MB-7J15 FS,SI20MB-4A25 FS,SI20MBV6-55 FS,SI20MB-7H15 FS,SI20BZK7L25 FS,SI20MBP6-11 FS,SI20BZK7A26 FS,SI20BZK7F26 FS,SI20MB-6A15 FS,SI20BZK7F26 FF,SI20MBA8-23& FS","SP20MB-4A40,SI20MBA6F15,SI20MBA6A15,SI20MBA6-40,SI20MBQ7H15,SI20MB-7J15,SI20MB-4A25,SI20MBV6-55,SI20MB-7H15,SI20BZK7L25,SI20MBP6-11,SI20BZK7A26,SI20BZK7F26,SI20MB-6A15,SI20BZK7F26,SI20MBA8-23&","SI20MB-8E25 FS,SI20MBA8-10 FS","SI20MB-8E25,SI20MBA8-10",142,,142,,33,,33,,96,8,"HK1003 -Blackpoint D2 - Rev.0E DD30092021"
1-2304,SI20MAJ6A15,"ERECTION, NDT, PT PIPES / VALVES MAJ",5121,"HK1003-Rev.0E-3",TT_Task,"55902",-,-,-,0,TK_NotStart,10/07/2022,,20/08/2022,,"SI20MAJ6-40 FS,SI---1P6A05 FS","SI20MAJ6-40,SI---1P6A05","SI20MAJ8-10 FS,SI20MAJ7A15 FS,SI20MAL6A15 FF,SI20MA-6B84 FS,SI20-6-16# FF,SI20-6-16# SS,SI20MAJ6A16 FS","SI20MAJ8-10,SI20MAJ7A15,SI20MAL6A15,SI20MA-6B84,SI20-6-16#,SI20-6-16#,SI20MAJ6A16",101,,107,,23,,24,,73,1064,"HK1003 -Blackpoint D2 - Rev.0E DD30092021"
1-2305,SI20LBG7C15,"E- AND I&C-ERECTION EL.SUPERHEATER 20LBG",5121,"HK1003-Rev.0E-3",TT_Task,"55902",-,-,-,0,TK_NotStart,16/10/2022,,22/10/2022,,"SI20LBG6C15 FS,SI20BZP7-20 FS,SI20BZK7E25 SS","SI20LBG6C15,SI20BZP7-20,SI20BZK7E25","SI20LBA8J10 FS,SI20LBA8H10 FS,SI20LBB8J11 FS,SI20LBG8A10 FS,SI20BZK7D10# FF,SI20BZK7D10# SS,SI20BZK7D11# FF,SI20BZK7D11# SS","SI20LBA8J10,SI20LBA8H10,SI20LBB8J11,SI20LBG8A10,SI20BZK7D10#,SI20BZK7D10#,SI20BZK7D11#,SI20BZK7D11#",115,,116,,26,,27,,83,1472,"HK1003 -Blackpoint D2 - Rev.0E DD30092021"
1-2306,SI20LBG6C15,"ERECTION EL.SUPERHEATER 20LBG",5121,"HK1003-Rev.0E-3",TT_Task,"55902",-,-,-,0,TK_NotStart,25/04/2022,,22/05/2022,,"SI20LBG2C05 FS,SI20UMC5C45 FS,SI20LBG4C40 FS","SI20LBG2C05,SI20UMC5C45,SI20LBG4C40","SI20LBG7C15 FS,SI20LBG6C40 SS,SI20UMC5E55 SS","SI20LBG7C15,SI20LBG6C40,SI20UMC5E55",90,,94,,21,,21,,59,616,"HK1003 -Blackpoint D2 - Rev.0E DD30092021"
1-2307,SI20LBG6C40,"(RFP) READY FOR PIPE CONNECTION EL.SUPERHEATER 20LBG",5121,"HK1003-Rev.0E-3",TT_FinMile,"55902",-,-,-,0,TK_NotStart,01/05/2022,,01/05/2022,,"SI20LBG6C15 SS","SI20LBG6C15","SI20MAW6H15 FS,SI20LBG6A17 FS,SI20UMC6B-15 FF","SI20MAW6H15,SI20LBG6A17,SI20UMC6B-15",91,,91,,21,,21,,60,1440,"HK1003 -Blackpoint D2 - Rev.0E DD30092021"
1-2308,SI20QCD8-10,"(TOP-20QCD) AMMONIA DOSING SYSTEM FOR CONDENSATE",5121,"HK1003-Rev.0E-3",TT_FinMile,"55902",-,-,-,0,TK_NotStart,22/04/2023,,22/04/2023,,"SI20QC-6H17 FS,SI20QC-7-15 FS,SI20QC-6H15 FS,SI--2222-34 FS","SI20QC-6H17,SI20QC-7-15,SI20QC-6H15,SI--2222-34","SI20QC-8-25 FS","SI20QC-8-25",142,,142,,33,,33,,96,240,"HK1003 -Blackpoint D2 - Rev.0E DD30092021"
1-2309,SI20QCC8-10,"(TOP-20QCC) TRISODIUMPHOSPHATE DOSING SYSTEM FOR HRSG",5121,"HK1003-Rev.0E-3",TT_FinMile,"55902",-,-,-,0,TK_NotStart,22/04/2023,,22/04/2023,,"SI--2222-34 FS,SI20QC-7-15 FS,SI20QC-6H15 FS,SI20QC-6H17 FS","SI--2222-34,SI20QC-7-15,SI20QC-6H15,SI20QC-6H17","SI20QC-8-25 FS","SI20QC-8-25",142,,142,,33,,33,,96,240,"HK1003 -Blackpoint D2 - Rev.0E DD30092021"
1-2310,SI20LBG2C80,"QUOTATION STAGE EL. SUPERHEATER LBG",5121,"HK1003-Rev.0E-3",TT_Task,"55902",-,-,-,100,TK_Complete,12/03/2021,12/03/2021,06/06/2021,06/06/2021,"SI20LBG2C75 FS,SI--3332-76 FS","SI20LBG2C75,SI--3332-76","SI20LBG2C65 FS,SI20LBG2C85 FS","SI20LBG2C65,SI20LBG2C85",31,31,44,44,7,7,10,10,6,,"HK1003 -Blackpoint D2 - Rev.0E DD30092021"
1-2311,SI20LBG2C75,"CONTRACT REVIEW / PREP. RFQ  EL. SUPERHEATER LBG",5121,"HK1003-Rev.0E-3",TT_Task,"55902",-,-,-,100,TK_Complete,12/02/2021,12/02/2021,11/03/2021,11/03/2021,"SI--3331-32 FS,SI20LBG2C86 FF,SI--HA-2A86 FS,SI--L--2-05 SS,SI-----1-05 FS","SI--3331-32,SI20LBG2C86,SI--HA-2A86,SI--L--2-05,SI-----1-05","SI20LBG2C80 FS","SI20LBG2C80",27,27,31,31,6,6,7,7,4,,"HK1003 -Blackpoint D2 - Rev.0E DD30092021"
1-2312,SI20SCA6-40,"(RFP) READY FOR PIPE CONNECTION COMPRESSED AIR/INSTRUMENT AIR SYSTEM SCA/QFA",5121,"HK1003-Rev.0E-3",TT_FinMile,"55902",-,-,-,0,TK_NotStart,04/10/2022,,04/10/2022,,"SI20SCA6-15 SS","SI20SCA6-15","SI20BAA7-15 FF,SI20QFB6H15 FS","SI20BAA7-15,SI20QFB6H15",113,,113,,26,,26,,82,288,"HK1003 -Blackpoint D2 - Rev.0E DD30092021"
1-2313,SI20SCA4-25,"TRANSPORT AIR COMPRESSOR SYSTEM 20SCA",5121,"HK1003-Rev.0E-3",TT_Task,"55902",-,-,-,0,TK_NotStart,27/07/2022,,20/09/2022,,"SI20SCA3-80 FS","SI20SCA3-80","SI20SCA4-40 FS","SI20SCA4-40",103,,111,,24,,26,,75,288,"HK1003 -Blackpoint D2 - Rev.0E DD30092021"
1-2314,SP20CJT3-25,"MANUFACTURING SFC CUBICLES 20CJT",5121,"HK1003-Rev.0E-3",TT_Task,"55902",-,-,-,45,TK_Active,01/06/2021,01/06/2021,21/02/2022,,"SP--CJT2-85 FS","SP--CJT2-85","SP20CJT4-25 FS","SP20CJT4-25",43,43,81,,10,10,18,,15,592,"HK1003 -Blackpoint D2 - Rev.0E DD30092021"
1-2315,SI--UBF2-50,"PREPARATION FOUNDATION GROUNDING DWGS UBF/UBE",5121,"HK1003-Rev.0E-3",TT_Task,"55902",-,-,-,100,TK_Complete,27/07/2021,27/07/2021,09/08/2021,09/08/2021,"SI--UBF2-70 FF,SI--BAW2-02 FS","SI--UBF2-70,SI--BAW2-02","SI--UBF2A75 FS","SI--UBF2A75",51,51,53,53,12,12,12,12,23,,"HK1003 -Blackpoint D2 - Rev.0E DD30092021"
1-2316,SI--B--2-92,"CABLE SPIDER",5121,"HK1003-Rev.0E-3",TT_Task,"55902",-,-,-,100,TK_Complete,05/02/2021,05/02/2021,19/03/2021,19/03/2021,"SI-----1-01 FS,SI--B--2-03 FS","SI-----1-01,SI--B--2-03","SI--B--2-66 FS,SI--B--2-30 FS","SI--B--2-66,SI--B--2-30",26,26,32,32,6,6,7,7,4,,"HK1003 -Blackpoint D2 - Rev.0E DD30092021"
1-2317,SI20UMC5D45,"COMPLETION FINISHING WORKS 20UMC",5121,"HK1003-Rev.0E-3",TT_Task,"55902",-,-,-,0,TK_NotStart,15/08/2022,,11/09/2022,,"SI20UMC5D40 FS","SI20UMC5D40","SI-----1-09 FS","SI-----1-09",106,,110,,24,,25,,77,3808,"HK1003 -Blackpoint D2 - Rev.0E DD30092021"
1-2318,SI20UMC5D35,"CONSTRUCTION FINISHING WORKS 20UMC",5121,"HK1003-Rev.0E-3",TT_Task,"55902",-,-,-,0,TK_NotStart,20/06/2022,,14/08/2022,,"SI20UMC3D30 FS,SI20UMC5C15 FF","SI20UMC3D30,SI20UMC5C15","SI20UMC5D40 FS","SI20UMC5D40",98,,106,,22,,24,,70,1024,"HK1003 -Blackpoint D2 - Rev.0E DD30092021"
1-2319,SI20UBN2-15,"DETAIL DESIGN CONCRETE STRUCTURE 20UBN",5121,"HK1003-Rev.0E-3",TT_Task,"55902",-,-,-,0,TK_NotStart,03/11/2021,,17/12/2021,,"SI20UBN2-10 FS,SI20UBN2-5 FS","SI20UBN2-10,SI20UBN2-5","SI20UBN2-40 FS","SI20UBN2-40",65,,71,,15,,16,,37,2120,"HK1003 -Blackpoint D2 - Rev.0E DD30092021"
1-2320,SI--LDK2B05,"BASIC DESIGN / PREPARATION P&ID'S CONDENSATE POLISHING PLANT 20LD",5121,"HK1003-Rev.0E-3",TT_Task,"55902",-,-,-,100,TK_Complete,03/02/2021,03/02/2021,02/03/2021,02/03/2021,"SI--G--2-20 FS,SI-----1-05 FS","SI--G--2-20,SI-----1-05","SI--LD-2-87 FS,SI--LD-2-86 FS,SI--LDK2B80 FS","SI--LD-2-87,SI--LD-2-86,SI--LDK2B80",26,26,30,30,6,6,7,7,4,,"HK1003 -Blackpoint D2 - Rev.0E DD30092021"
1-2321,SI20HAD8G10,"(TOP-20HAD80) HRSG LP SYSTEM",5121,"HK1003-Rev.0E-3",TT_FinMile,"55902",-,-,-,0,TK_NotStart,28/04/2023,,28/04/2023,,"SI20LCL6A15 FS,SI20LCL6A45 FS,SI20HA-4B40 FS,SI20LCL7A15 FS,SI20HA-6A48 FS,SI20HB-6-14 FS,SI--9998-21& SS,SI20HA-6-56 FS,SI20BZK7-180 FS","SI20LCL6A15,SI20LCL6A45,SI20HA-4B40,SI20LCL7A15,SI20HA-6A48,SI20HB-6-14,SI--9998-21&,SI20HA-6-56,SI20BZK7-180","SI20HAD8G25 FS","SI20HAD8G25",142,,142,,33,,33,,96,0,"HK1003 -Blackpoint D2 - Rev.0E DD30092021"
1-2322,SI20MA-6C15,"CLEANING MAIN K-BEARING AND PLACING AUXILIARY K-BEARINGS MA",5121,"HK1003-Rev.0E-3",TT_Task,"55902",-,-,-,0,TK_NotStart,06/08/2022,,07/08/2022,,"SI20MA-6C11 FS,SI20MA-6C00 FS","SI20MA-6C11,SI20MA-6C00","SI20MA-6C20 FS","SI20MA-6C20",105,,105,,24,,24,,77,272,"HK1003 -Blackpoint D2 - Rev.0E DD30092021"
1-2323,SI20MA-6A10,"PLACING K-TURBINE ON BEARING PEDESTALS MA",5121,"HK1003-Rev.0E-3",TT_Mile,"55902",-,-,-,0,TK_NotStart,04/08/2022,,04/08/2022,,"SI20UMC6M15 FS,SI20MA-4-40 FS,SI20MA-5-27 FS,SI20MA-6B83 FS,SI20UMC5E62 FS,SI20UMC5E56 FS,SI20UMC5E64 FS,SI20UMC5E66 FS,SI20UMC5E60 FS,SI20MA-6C00 FS","SI20UMC6M15,SI20MA-4-40,SI20MA-5-27,SI20MA-6B83,SI20UMC5E62,SI20UMC5E56,SI20UMC5E64,SI20UMC5E66,SI20UMC5E60,SI20MA-6C00","SI20MA-6C11 FS,SI20MA-6B82 FS,SI20MAV6-15 FS,SI-PM-35 FS,SI20MA-6A17# FS","SI20MA-6C11,SI20MA-6B82,SI20MAV6-15,SI-PM-35,SI20MA-6A17#",104,,104,,24,,24,,76,96,"HK1003 -Blackpoint D2 - Rev.0E DD30092021"
1-2324,SI20MA-6B82,"PLACING LP1-TURBINE SHAFT MA",5121,"HK1003-Rev.0E-3",TT_Mile,"55902",-,-,-,0,TK_NotStart,23/09/2022,,23/09/2022,,"SI20MA-6B83 FS,SI20MA-6A10 FS,SI20MA-6B14 FS","SI20MA-6B83,SI20MA-6A10,SI20MA-6B14","SI20MA-6B16 FS","SI20MA-6B16",111,,111,,26,,26,,81,8,"HK1003 -Blackpoint D2 - Rev.0E DD30092021"
1-2325,SI20MAA6A45,"INSULATION PIPES / VALVES FOR STEAM SYSTEM MAA-C",5121,"HK1003-Rev.0E-3",TT_Task,"55902",-,-,-,0,TK_NotStart,04/12/2022,,07/01/2023,,"SI20MAA7A15 FF,SI20MAA6A15 FS,SI-P2I-15 FS","SI20MAA7A15,SI20MAA6A15,SI-P2I-15","SI20MA-8-10 FS,SI20---6A15# FF","SI20MA-8-10,SI20---6A15#",122,,127,,28,,29,,86,776,"HK1003 -Blackpoint D2 - Rev.0E DD30092021"
1-2326,SI20MAA6A15,"ERECTION, NDT, PT PIPES / VALVES MAA-C",5121,"HK1003-Rev.0E-3",TT_Task,"55902",-,-,-,0,TK_NotStart,02/10/2022,,03/12/2022,,"SI20MA-6-65 FS,SI---5P6A09 FS","SI20MA-6-65,SI---5P6A09","SI20MAL8-10 FS,SI20MAV8-10 FS,SI20MAD8-10 FS,SI20MAX8-10 FS,SI20MAJ8-10 FS,SI20MAW8-10 FS,SI20MAN8-10 FS,SI20MAG8-10 FS,SI20MAA7A15 FS,SI20MA-8-10 FS,SI20MAA6A45 FS,SI20-6-16# FF,SI20-6-16# SS,SI20MA-8B25 FS","SI20MAL8-10,SI20MAV8-10,SI20MAD8-10,SI20MAX8-10,SI20MAJ8-10,SI20MAW8-10,SI20MAN8-10,SI20MAG8-10,SI20MAA7A15,SI20MA-8-10,SI20MAA6A45,SI20-6-16#,SI20-6-16#,SI20MA-8B25",113,,122,,26,,28,,82,776,"HK1003 -Blackpoint D2 - Rev.0E DD30092021"
1-2327,SI20LBG2C85,"CONTRACT INTO FORCE EL. SUPERHEATER LBG",5121,"HK1003-Rev.0E-3",TT_Mile,"55902",-,-,-,100,TK_Complete,07/06/2021,07/06/2021,07/06/2021,07/06/2021,"SI20LBG2C80 FS,SI-----2E91 FS","SI20LBG2C80,SI-----2E91","SI20LBG3C25 FS,SI20LBG3C26 FS,SI20LBG2C87 FS,SI20LBG2C60 FS,SI20LBG2C65 FS","SI20LBG3C25,SI20LBG3C26,SI20LBG2C87,SI20LBG2C60,SI20LBG2C65",44,44,44,44,10,10,10,10,16,,"HK1003 -Blackpoint D2 - Rev.0E DD30092021"
1-2328,SI20CHY3-25,"DETAIL DESIGN /MANUFACTURING / SHOP TEST PROT./ SYNCHR./METERING 20CHA/CHY/CJN",5121,"HK1003-Rev.0E-3",TT_Task,"55902",-,-,-,13,TK_Active,09/09/2021,09/09/2021,14/02/2022,,"SP20CJT3-81 SS,SI--CHY2-85 FS","SP20CJT3-81,SI--CHY2-85","SP--CJJ3-25 SS,SI20CHY4-10 FS","SP--CJJ3-25,SI20CHY4-10",57,57,80,,13,13,18,,29,592,"HK1003 -Blackpoint D2 - Rev.0E DD30092021"
1-2329,SI--SG-2-20,"PRELIMINARY FIRE- & EXPLOSION PROTECTION CONCEPT AVAILABLE",5121,"HK1003-Rev.0E-3",TT_FinMile,"55902",-,-,-,100,TK_Complete,28/09/2020,28/09/2020,28/09/2020,28/09/2020,"SI--SG-2-10 FS","SI--SG-2-10","SI--PM-2-30 FS,SI--SG-2-30 FS,SI--SG-2-22 FS,SI--SG-2-15 FF","SI--PM-2-30,SI--SG-2-30,SI--SG-2-22,SI--SG-2-15",8,8,8,8,1,1,1,1,0,,"HK1003 -Blackpoint D2 - Rev.0E DD30092021"
1-2330,SI--SG-2-10,"PREPARATION FIRE-/ EXPLOSION PROTECTION CONCEPT",5121,"HK1003-Rev.0E-3",TT_Task,"55902",-,-,-,100,TK_Complete,01/09/2020,01/09/2020,28/09/2020,28/09/2020,"SI20---2M10 FS","SI20---2M10","SI--HA-2-84 FS,SI--EK-2-77 FF,SI--EK-2-75 FS,SI--SG-2-20 FS","SI--HA-2-84,SI--EK-2-77,SI--EK-2-75,SI--SG-2-20",4,4,8,8,1,1,1,1,0,,"HK1003 -Blackpoint D2 - Rev.0E DD30092021"
1-2331,SI20UBX5-10,"(H) START PLACING FORMWORK 20UBX/20UBG03",5121,"HK1003-Rev.0E-3",TT_Mile,"55902",-,-,-,0,TK_NotStart,23/04/2022,,23/04/2022,,"SI20UBX5-05 FS,SI-----5-21& FS,SI--UBX2A76 FS","SI20UBX5-05,SI-----5-21&,SI--UBX2A76","SI20UBX5-15 SS,SI20UBX5-15.00 FS","SI20UBX5-15,SI20UBX5-15.00",90,,90,,21,,21,,59,1000,"HK1003 -Blackpoint D2 - Rev.0E DD30092021"
1-2332,SI20UBX5-05,"WORK PREPARATION / EXCAVATION / PILE TRIMMING / PLATE WELDING 20UBX/20UBG03",5121,"HK1003-Rev.0E-3",TT_Task,"55902",-,-,-,0,TK_NotStart,16/04/2022,,22/04/2022,,"SI20UBF5-05 SS,SI--UBX2A75 FS,SI-----5-22 FS,SI20UBF5E45 FF,SI-----5-21& FS,SI-----5-20 FS,SI-P222-84 FS,SI-P222-128 FS,SI20UBX2-82 FS","SI20UBF5-05,SI--UBX2A75,SI-----5-22,SI20UBF5E45,SI-----5-21&,SI-----5-20,SI-P222-84,SI-P222-128,SI20UBX2-82","SI20UBX5-10 FS,SI-P222-131# FF,SI-P222-131# SS","SI20UBX5-10,SI-P222-131#,SI-P222-131#",89,,89,,20,,20,,58,1000,"HK1003 -Blackpoint D2 - Rev.0E DD30092021"
1-2333,SI20HB-6A17&,"START ERECTION SUPP. STEEL STRUCTURE HRSG20",5121,"HK1003-Rev.0E-3",TT_Mile,"55902",-,-,-,0,TK_NotStart,17/01/2022,,17/01/2022,,"SI20HB-6A17 SS","SI20HB-6A17","SI20HA-6-15# SS,SI20HA-6-55 FS","SI20HA-6-15#,SI20HA-6-55",76,,76,,17,,17,,46,3624,"HK1003 -Blackpoint D2 - Rev.0E DD30092021"
1-2334,SI20UMC5B45,"FINISHING WORKS / CURING TIME BUILDING FOUNDATION 20UMC",5121,"HK1003-Rev.0E-3",TT_Task,"55902",-,-,-,0,TK_NotStart,27/12/2021,,09/01/2022,,"SI20UMC5B90 SS,SI20UMC5B90.35 FS,SI20UMC5B90.26 FS,SI20UMC5B90.20 FS,SI20UMC5B90.14 FS,SI20UMC5B90.11 FS,SI20UMC5B90.08 FS,SI20UMC5B90.05 FS,SI20UMC5B90.02 FS,SI20UMC5B90.23 FS,SI20UMC5B90.32 FS,SI20UMC5B90.29 FS","SI20UMC5B90,SI20UMC5B90.35,SI20UMC5B90.26,SI20UMC5B90.20,SI20UMC5B90.14,SI20UMC5B90.11,SI20UMC5B90.08,SI20UMC5B90.05,SI20UMC5B90.02,SI20UMC5B90.23,SI20UMC5B90.32,SI20UMC5B90.29","SI20UMC5B95 FS,SI20UMC5B10 FS","SI20UMC5B95,SI20UMC5B10",73,,75,,17,,17,,43,24,"HK1003 -Blackpoint D2 - Rev.0E DD30092021"
1-2335,SI20MAG3M70,"TIMES OF COMPLETION (FINAL DATA IN KANLOG) MODULE 20MAG50Y",5121,"HK1003-Rev.0E-3",TT_FinMile,"55902",-,-,-,0,TK_NotStart,03/02/2022,,03/02/2022,,"SI20---3M70 FF","SI20---3M70","SI20MAG4M10 FS,SI20---3M107 FS","SI20MAG4M10,SI20---3M107",78,,78,,18,,18,,47,1112,"HK1003 -Blackpoint D2 - Rev.0E DD30092021"
1-2336,SI20MAG3M80,"(RFS) READY FOR SHIPMENT MODULE 20MAG50Y",5121,"HK1003-Rev.0E-3",TT_FinMile,"55902",-,-,-,0,TK_NotStart,29/03/2022,,29/03/2022,,"SI20MAG4M10 FS","SI20MAG4M10","SI20MAG4M25 FS","SI20MAG4M25",86,,86,,20,,20,,54,896,"HK1003 -Blackpoint D2 - Rev.0E DD30092021"
1-2337,SI20UPY4M10,"LOGISTICS AND CUSTOMS PREPARATION MODULE 20UPY00Y",5121,"HK1003-Rev.0E-3",TT_Task,"55902",-,-,-,0,TK_NotStart,05/04/2022,,02/05/2022,,"SI20UPY3M70 FS","SI20UPY3M70","SI20UPY3M80 FS","SI20UPY3M80",87,,91,,20,,21,,56,952,"HK1003 -Blackpoint D2 - Rev.0E DD30092021"
1-2338,SI20UPY3M70,"TIMES OF COMPLETION (FINAL DATA IN KANLOG) MODULE 20UPY00Y",5121,"HK1003-Rev.0E-3",TT_FinMile,"55902",-,-,-,0,TK_NotStart,05/04/2022,,05/04/2022,,"SI20---3M72 FF","SI20---3M72","SI20UPY4M10 FS","SI20UPY4M10",87,,87,,20,,20,,56,952,"HK1003 -Blackpoint D2 - Rev.0E DD30092021"
1-2339,SI20UPY3M80,"(RFS) READY FOR SHIPMENT MODULE 20UPY00Y",5121,"HK1003-Rev.0E-3",TT_FinMile,"55902",-,-,-,0,TK_NotStart,02/05/2022,,02/05/2022,,"SI20UPY4M10 FS","SI20UPY4M10","SI20UPY4M25 FS","SI20UPY4M25",91,,91,,21,,21,,61,952,"HK1003 -Blackpoint D2 - Rev.0E DD30092021"
1-2340,SI20PCB4M10,"LOGISTICS AND CUSTOMS PREPARATION MODULE 20PCB10Y",5121,"HK1003-Rev.0E-3",TT_Task,"55902",-,-,-,0,TK_NotStart,04/03/2022,,31/03/2022,,"SI20PCB3M70 FS","SI20PCB3M70","SI20PCB3M80 FS","SI20PCB3M80",82,,86,,19,,20,,51,1336,"HK1003 -Blackpoint D2 - Rev.0E DD30092021"
1-2341,SI20PCB3M70,"TIMES OF COMPLETION (FINAL DATA IN KANLOG) MODULE 20PCB10Y",5121,"HK1003-Rev.0E-3",TT_FinMile,"55902",-,-,-,0,TK_NotStart,04/03/2022,,04/03/2022,,"SI20---3M71 FS","SI20---3M71","SI20PCB4M10 FS,SI20---3M114 FS","SI20PCB4M10,SI20---3M114",82,,82,,19,,19,,51,1336,"HK1003 -Blackpoint D2 - Rev.0E DD30092021"
1-2342,SI20PGB4M10,"LOGISTICS AND CUSTOMS PREPARATION MODULE 20PGB10Y",5121,"HK1003-Rev.0E-3",TT_Task,"55902",-,-,-,0,TK_NotStart,04/03/2022,,31/03/2022,,"SI20PGB3M70 FS","SI20PGB3M70","SI20PGB3M80 FS,SI20PGB2B92 FS","SI20PGB3M80,SI20PGB2B92",82,,86,,19,,20,,51,1320,"HK1003 -Blackpoint D2 - Rev.0E DD30092021"
1-2343,SI20PGB3M70,"TIMES OF COMPLETION (FINAL DATA IN KANLOG) MODULE 20PGB10Y",5121,"HK1003-Rev.0E-3",TT_FinMile,"55902",-,-,-,0,TK_NotStart,04/03/2022,,04/03/2022,,"SI20---3M71 FS","SI20---3M71","SI20PGB4M10 FS","SI20PGB4M10",82,,82,,19,,19,,52,1320,"HK1003 -Blackpoint D2 - Rev.0E DD30092021"
1-2344,SI20LDK4M10,"LOGISTICS AND CUSTOMS PREPARATION MODULE 20LDK00Y",5121,"HK1003-Rev.0E-3",TT_Task,"55902",-,-,-,0,TK_NotStart,03/02/2022,,02/03/2022,,"SI20LDK3M70 FS","SI20LDK3M70","SI20LDK3M80 FS","SI20LDK3M80",78,,82,,18,,19,,47,248,"HK1003 -Blackpoint D2 - Rev.0E DD30092021"
1-2345,SI20LDK3M70,"TIMES OF COMPLETION (FINAL DATA IN KANLOG) MODULE 20LDK00Y",5121,"HK1003-Rev.0E-3",TT_FinMile,"55902",-,-,-,0,TK_NotStart,03/02/2022,,03/02/2022,,"SI20---3M70 FF","SI20---3M70","SI20LDK4M10 FS,SI20LDK2B91 FS","SI20LDK4M10,SI20LDK2B91",78,,78,,18,,18,,48,248,"HK1003 -Blackpoint D2 - Rev.0E DD30092021"
1-2346,SP20MKA4-11,"LOGISTICS AND CUSTOMS PREPARATION GENERATOR SKIDS 20MKA",5121,"HK1003-Rev.0E-3",TT_Task,"55902",-,-,-,0,TK_NotStart,02/04/2022,,29/04/2022,,"SP20MKA3-71 FS","SP20MKA3-71","SP20MKA3B80 FS","SP20MKA3B80",87,,90,,20,,21,,55,376,"HK1003 -Blackpoint D2 - Rev.0E DD30092021"
1-2347,SP20MKA3-71,"TIMES OF COMPLETION (FINAL DATA IN KANLOG) GENERATOR SKIDS 20MKA",5121,"HK1003-Rev.0E-3",TT_FinMile,"55902",-,-,-,0,TK_NotStart,01/04/2022,,01/04/2022,,"SP20MKA3B25 FS","SP20MKA3B25","SP20MKA4-11 FS","SP20MKA4-11",86,,86,,20,,20,,55,376,"HK1003 -Blackpoint D2 - Rev.0E DD30092021"
1-2348,SP20MA-4-11,"LOGISTICS AND CUSTOMS PREPARATION ST LP OUTER CASING MA-",5121,"HK1003-Rev.0E-3",TT_Task,"55902",-,-,-,0,TK_NotStart,16/04/2022,,13/05/2022,,"SP20MA-3-71 FS","SP20MA-3-71","SP20MA-3C80 FS","SP20MA-3C80",89,,92,,20,,21,,58,8,"HK1003 -Blackpoint D2 - Rev.0E DD30092021"
1-2349,SP20MA-3-71,"TIMES OF COMPLETION (FINAL DATA IN KANLOG) ST LP OUTER CASING MA-",5121,"HK1003-Rev.0E-3",TT_FinMile,"55902",-,-,-,0,TK_NotStart,15/04/2022,,15/04/2022,,"SP20MA-3C81 FS","SP20MA-3C81","SP20MA-4-11 FS","SP20MA-4-11",88,,88,,20,,20,,58,8,"HK1003 -Blackpoint D2 - Rev.0E DD30092021"
1-2350,SP20MA-4-10,"LOGISTICS AND CUSTOMS PREPARATION STEAM TURBINE (HI-L)",5121,"HK1003-Rev.0E-3",TT_Task,"55902",-,-,-,0,TK_NotStart,16/04/2022,,06/05/2022,,"SP20MA-3-70 FS","SP20MA-3-70","SP20MA-3-80 FS","SP20MA-3-80",89,,91,,20,,21,,58,96,"HK1003 -Blackpoint D2 - Rev.0E DD30092021"
1-2351,SP20MA-3-70,"TIMES OF COMPLETION (FINAL DATA IN KANLOG) STEAM TURBINE (HI-L)",5121,"HK1003-Rev.0E-3",TT_Mile,"55902",-,-,-,0,TK_NotStart,16/04/2022,,16/04/2022,,"SP20MA-3-81 SS","SP20MA-3-81","SP20MA-4-10 FS","SP20MA-4-10",89,,89,,20,,20,,58,96,"HK1003 -Blackpoint D2 - Rev.0E DD30092021"
1-2352,SP20MAD4-10,"LOGISTICS AND CUSTOMS PREPARATION ST BEARINGS 20MAD",5121,"HK1003-Rev.0E-3",TT_Task,"55902",-,-,-,0,TK_NotStart,02/04/2022,,27/04/2022,,"SP20MAD3-70 FS","SP20MAD3-70","SP20MAD3-80 FS","SP20MAD3-80",87,,90,,20,,21,,55,32,"HK1003 -Blackpoint D2 - Rev.0E DD30092021"
1-2353,SP20MAD3-70,"TIMES OF COMPLETION (FINAL DATA IN KANLOG) ST BEARINGS 20MAD",5121,"HK1003-Rev.0E-3",TT_FinMile,"55902",-,-,-,0,TK_NotStart,01/04/2022,,01/04/2022,,"SP20MAD3-25 FS","SP20MAD3-25","SP20MAD4-10 FS","SP20MAD4-10",86,,86,,20,,20,,55,32,"HK1003 -Blackpoint D2 - Rev.0E DD30092021"
1-2354,SP20MKA4-10,"LOGISTICS AND CUSTOMS PREPARATION GEN. 20MKA",5121,"HK1003-Rev.0E-3",TT_Task,"55902",-,-,-,0,TK_NotStart,02/04/2022,,29/04/2022,,"SP20MKA3-70 FS","SP20MKA3-70","SP20MKA3-80 FS","SP20MKA3-80",87,,90,,20,,21,,55,376,"HK1003 -Blackpoint D2 - Rev.0E DD30092021"
1-2355,SP20MKA3-70,"TIMES OF COMPLETION (FINAL DATA IN KANLOG) ST GEN. 20MKA",5121,"HK1003-Rev.0E-3",TT_FinMile,"55902",-,-,-,0,TK_NotStart,02/04/2022,,02/04/2022,,"SP20MKA3-81 FS","SP20MKA3-81","SP20MKA4-10 FS","SP20MKA4-10",87,,87,,20,,20,,55,376,"HK1003 -Blackpoint D2 - Rev.0E DD30092021"
1-2356,SP20MAX4-10,"LOGISTICS AND CUSTOMS PREPARATION ST HYDRAULIC SYSTEM 20MAX",5121,"HK1003-Rev.0E-3",TT_Task,"55902",-,-,-,0,TK_NotStart,02/04/2022,,29/04/2022,,"SP20MAX3-70 FS","SP20MAX3-70","SP20MAX3-80 FS","SP20MAX3-80",87,,90,,20,,21,,55,1648,"HK1003 -Blackpoint D2 - Rev.0E DD30092021"
1-2357,SP20MAX3-70,"TIMES OF COMPLETION (FINAL DATA IN KANLOG) ST HYDRAULIC SYSTEM 20MAX",5121,"HK1003-Rev.0E-3",TT_Mile,"55902",-,-,-,0,TK_NotStart,02/04/2022,,02/04/2022,,"SP20MAX3-25 FS","SP20MAX3-25","SP20MAX4-10 FS","SP20MAX4-10",87,,87,,20,,20,,55,1648,"HK1003 -Blackpoint D2 - Rev.0E DD30092021"
1-2358,SP20MAW4-10,"LOGISTICS AND CUSTOMS PREPARATION GLAND STEAM CONDENSER 20MAW",5121,"HK1003-Rev.0E-3",TT_Task,"55902",-,-,-,0,TK_NotStart,02/04/2022,,29/04/2022,,"SP20MAW3-70 FS","SP20MAW3-70","SP20MAW3-80 FS","SP20MAW3-80",87,,90,,20,,21,,55,664,"HK1003 -Blackpoint D2 - Rev.0E DD30092021"
1-2359,SP20MAW3-70,"TIMES OF COMPLETION (FINAL DATA IN KANLOG) GLAND STEAM CONDENSER 20MAW",5121,"HK1003-Rev.0E-3",TT_Mile,"55902",-,-,-,0,TK_NotStart,02/04/2022,,02/04/2022,,"SP20MAW3-25 FS","SP20MAW3-25","SP20MAW4-10 FS","SP20MAW4-10",87,,87,,20,,20,,55,664,"HK1003 -Blackpoint D2 - Rev.0E DD30092021"
1-2360,SP20MBR4-10,"LOGISTICS AND CUSTOMS PREPARATION DIFFUSER 20MBR",5121,"HK1003-Rev.0E-3",TT_Task,"55902",-,-,-,0,TK_NotStart,23/02/2022,,22/03/2022,,"SP20MBR3-70 FS","SP20MBR3-70","SP20MBR3A80 FS","SP20MBR3A80",81,,85,,19,,19,,50,632,"HK1003 -Blackpoint D2 - Rev.0E DD30092021"
1-2361,SP20MBR3-70,"TIMES OF COMPLETION (FINAL DATA IN KANLOG) DIFFUSER 20MBR",5121,"HK1003-Rev.0E-3",TT_Mile,"55902",-,-,-,0,TK_NotStart,23/02/2022,,23/02/2022,,"SP20MBR3A25 FS,SI20MBR2B65 FS","SP20MBR3A25,SI20MBR2B65","SP20MBR4-10 FS","SP20MBR4-10",81,,81,,19,,19,,50,632,"HK1003 -Blackpoint D2 - Rev.0E DD30092021"
1-2362,SI20UMC2B-35,"LOGISTICS AND CUSTOMS PREPARATION - EMBEDDED PARTS (UMC)",5121,"HK1003-Rev.0E-3",TT_Task,"55902",-,-,-,100,TK_Complete,16/06/2021,16/06/2021,13/07/2021,13/07/2021,"SI20UMC2B-30 FS","SI20UMC2B-30","SI20UMC2B-40 FS","SI20UMC2B-40",45,45,49,49,10,10,11,11,17,,"HK1003 -Blackpoint D2 - Rev.0E DD30092021"
1-2363,SI20UMC2B-30,"TIMES OF COMPLETION (FINAL DATA IN KANLOG) - EMBEDDED PARTS (UMC)",5121,"HK1003-Rev.0E-3",TT_FinMile,"55902",-,-,-,100,TK_Complete,16/06/2021,16/06/2021,16/06/2021,16/06/2021,"SP20MA-3D80 SS,SI20UMC2B-25 FS","SP20MA-3D80,SI20UMC2B-25","SI20UMC2B-35 FS","SI20UMC2B-35",45,45,45,45,10,10,10,10,17,,"HK1003 -Blackpoint D2 - Rev.0E DD30092021"
1-2364,SI20UMC2B-40,"(RFS) READY FOR SHIPMENT EMBEDDED PARTS (UMC)",5121,"HK1003-Rev.0E-3",TT_FinMile,"55902",-,-,-,100,TK_Complete,13/07/2021,13/07/2021,13/07/2021,13/07/2021,"SI20UMC2B-35 FS","SI20UMC2B-35","SI20UMC2B-45 FS","SI20UMC2B-45",49,49,49,49,11,11,11,11,21,,"HK1003 -Blackpoint D2 - Rev.0E DD30092021"
1-2365,SI20MAL4M10,"LOGISTICS AND CUSTOMS PREPARATION MODULE 20MAL00YC",5121,"HK1003-Rev.0E-3",TT_Task,"55902",-,-,-,0,TK_NotStart,03/02/2022,,02/03/2022,,"SI20MAL3M70 FS","SI20MAL3M70","SI20MAL3M80 FS","SI20MAL3M80",78,,82,,18,,19,,48,240,"HK1003 -Blackpoint D2 - Rev.0E DD30092021"
1-2366,SI20MAL3M70,"TIMES OF COMPLETION (FINAL DATA IN KANLOG) MODULE 20MAL00YC",5121,"HK1003-Rev.0E-3",TT_FinMile,"55902",-,-,-,0,TK_NotStart,03/02/2022,,03/02/2022,,"SI20---3M70 FF","SI20---3M70","SI20MAL4M10 FS,SI20---3M108 FS","SI20MAL4M10,SI20---3M108",78,,78,,18,,18,,48,240,"HK1003 -Blackpoint D2 - Rev.0E DD30092021"
1-2367,SI20MAG4M10,"LOGISTICS AND CUSTOMS PREPARATION MODULE 20MAG50Y",5121,"HK1003-Rev.0E-3",TT_Task,"55902",-,-,-,0,TK_NotStart,03/02/2022,,02/03/2022,,"SI20MAG3M70 FS","SI20MAG3M70","SI20MAG3M80 FS","SI20MAG3M80",78,,82,,18,,19,,48,1112,"HK1003 -Blackpoint D2 - Rev.0E DD30092021"
1-2368,SP20MAV4-10,"LOGISTICS AND CUSTOMS PREPARATION LUBE OIL MODULE 20MAV",5121,"HK1003-Rev.0E-3",TT_Task,"55902",-,-,-,0,TK_NotStart,02/04/2022,,29/04/2022,,"SP20MAV3-70 FS","SP20MAV3-70","SP20MAV3-80 FS","SP20MAV3-80",87,,90,,20,,21,,55,552,"HK1003 -Blackpoint D2 - Rev.0E DD30092021"
1-2369,SP20MAV3-70,"TIMES OF COMPLETION (FINAL DATA IN KANLOG) LUBE OIL MODULE 20MAV",5121,"HK1003-Rev.0E-3",TT_Mile,"55902",-,-,-,0,TK_NotStart,02/04/2022,,02/04/2022,,"SP20MAV3-25 FS","SP20MAV3-25","SP20MAV4-10 FS","SP20MAV4-10",87,,87,,20,,20,,55,552,"HK1003 -Blackpoint D2 - Rev.0E DD30092021"
1-2370,SP20MAN4-10,"LOGISTICS AND CUSTOMS PREPARATION ST BYPASS VALVES 20MAN",5121,"HK1003-Rev.0E-3",TT_Task,"55902",-,-,-,0,TK_NotStart,29/04/2022,,26/05/2022,,"SP20MAN3-70 FS","SP20MAN3-70","SP20MAN3-80 FS","SP20MAN3-80",90,,94,,21,,22,,60,192,"HK1003 -Blackpoint D2 - Rev.0E DD30092021"
1-2371,SP20MAN3-70,"TIMES OF COMPLETION (FINAL DATA IN KANLOG) ST BYPASS VALVES 20MAN",5121,"HK1003-Rev.0E-3",TT_Mile,"55902",-,-,-,0,TK_NotStart,29/04/2022,,29/04/2022,,"SP20MAN3-26 FS","SP20MAN3-26","SP20MAN4-10 FS","SP20MAN4-10",90,,90,,21,,21,,60,192,"HK1003 -Blackpoint D2 - Rev.0E DD30092021"
1-2372,SP20MAJ4-10,"LOGISTICS AND CUSTOMS PREPARATION AIR REMOVAL SYSTEM 20MAJ",5121,"HK1003-Rev.0E-3",TT_Task,"55902",-,-,-,0,TK_NotStart,15/02/2022,,14/03/2022,,"SP20MAJ3-70 FS","SP20MAJ3-70","SP20MAJ3-80 FS","SP20MAJ3-80",80,,84,,18,,19,,49,1184,"HK1003 -Blackpoint D2 - Rev.0E DD30092021"
1-2373,SP20MAJ3-70,"TIMES OF COMPLETION (FINAL DATA IN KANLOG) AIR REMOVAL SYSTEM 20MAJ",5121,"HK1003-Rev.0E-3",TT_Mile,"55902",-,-,-,0,TK_NotStart,15/02/2022,,15/02/2022,,"SP20MAJ3-84 FS","SP20MAJ3-84","SP20MAJ4-10 FS","SP20MAJ4-10",80,,80,,18,,18,,49,1184,"HK1003 -Blackpoint D2 - Rev.0E DD30092021"
1-2374,SP20MAG4-11,"LOGISTICS AND CUSTOMS PREPARATION ST CONDENSER 20MAG",5121,"HK1003-Rev.0E-3",TT_Task,"55902",-,-,-,0,TK_NotStart,23/02/2022,,22/03/2022,,"SP20MAG3-70 FS","SP20MAG3-70","SP20MAG3-81 FS","SP20MAG3-81",81,,85,,19,,19,,50,144,"HK1003 -Blackpoint D2 - Rev.0E DD30092021"
1-2375,SP20MAG3-70,"TIMES OF COMPLETION (FINAL DATA IN KANLOG) ST CONDENSER 20MAG",5121,"HK1003-Rev.0E-3",TT_Mile,"55902",-,-,-,0,TK_NotStart,23/02/2022,,23/02/2022,,"SP20MAG3-25 FS","SP20MAG3-25","SP20MAG4-11 FS","SP20MAG4-11",81,,81,,19,,19,,50,144,"HK1003 -Blackpoint D2 - Rev.0E DD30092021"
1-2376,SI20PCB3M80,"(RFS) READY FOR SHIPMENT MODULE 20PCB10Y",5121,"HK1003-Rev.0E-3",TT_FinMile,"55902",-,-,-,0,TK_NotStart,31/03/2022,,31/03/2022,,"SI20PCB4M10 FS","SI20PCB4M10","SI20PCB4M25 FS","SI20PCB4M25",86,,86,,20,,20,,54,1336,"HK1003 -Blackpoint D2 - Rev.0E DD30092021"
1-2377,SI--PCB2B76,"RFQ / TECHN. SPEC. READY SERVICE COOLING WATER BOOSTER PUMP PCB",5121,"HK1003-Rev.0E-3",TT_Mile,"55902",-,-,-,100,TK_Complete,07/02/2021,07/02/2021,07/02/2021,07/02/2021,"SI--PCB2B75 FS","SI--PCB2B75","SI--PCB2B80 FS","SI--PCB2B80",27,27,27,27,6,6,6,6,4,,"HK1003 -Blackpoint D2 - Rev.0E DD30092021"
1-2378,SI20PCB3B80,"(RFS) READY FOR SHIPMENT SERVICE COOLING WATER BOOSTER PUMP 20PCB",5121,"HK1003-Rev.0E-3",TT_FinMile,"55902",-,-,-,0,TK_NotStart,16/11/2021,,16/11/2021,,"SI20PCB4B10 FS,SI20PCB3B31 FS,SI20PCB2B05 FS","SI20PCB4B10,SI20PCB3B31,SI20PCB2B05","SI20PCB4B25 FS","SI20PCB4B25",67,,67,,15,,15,,38,208,"HK1003 -Blackpoint D2 - Rev.0E DD30092021"
1-2379,SI--PCB2B75,"CONTRACT REVIEW / PREP. RFQ SERVICE COOLING WATER BOOSTER PUMP PCB",5121,"HK1003-Rev.0E-3",TT_Task,"55902",-,-,-,100,TK_Complete,10/01/2021,10/01/2021,06/02/2021,06/02/2021,"SI--3331-32 FS,SI--P--2-05 SS,SI20PCB2B64 SS,SI-----1-01 FS","SI--3331-32,SI--P--2-05,SI20PCB2B64,SI-----1-01","SI20PCB2B65 FS,SI--PCB2B76 FS","SI20PCB2B65,SI--PCB2B76",23,23,27,27,5,5,6,6,1,,"HK1003 -Blackpoint D2 - Rev.0E DD30092021"
1-2380,SI--PCB2B85,"CONTRACT INTO FORCE SERVICE COOLING WATER BOOSTER PUMP PCB",5121,"HK1003-Rev.0E-3",TT_Mile,"55902",-,-,-,100,TK_Complete,31/03/2021,31/03/2021,31/03/2021,31/03/2021,"SI--PCB2B80 FS","SI--PCB2B80","SI20PCB3B31 FS,SI--PCB2B86 FS,SI20PCB2B67 FS,SI20PCB2B66 FS","SI20PCB3B31,SI--PCB2B86,SI20PCB2B67,SI20PCB2B66",34,34,34,34,8,8,8,8,7,,"HK1003 -Blackpoint D2 - Rev.0E DD30092021"
1-2381,SI--PCB2B80,"QUOTATION STAGE SERVICE COOLING WATER BOOSTER PUMP PCB",5121,"HK1003-Rev.0E-3",TT_Task,"55902",-,-,-,100,TK_Complete,07/02/2021,07/02/2021,30/03/2021,30/03/2021,"SI--PCB2B76 FS,SI--3332-76 FS","SI--PCB2B76,SI--3332-76","SI--PCB2B85 FS","SI--PCB2B85",27,27,34,34,6,6,8,8,4,,"HK1003 -Blackpoint D2 - Rev.0E DD30092021"
1-2382,SI20PCB3B31,"MANUFACTURING / SHOP TEST SERVICE COOLING WATER BOOSTER PUMP 20PCB",5121,"HK1003-Rev.0E-3",TT_Task,"55902",-,-,-,90,TK_Active,31/03/2021,31/03/2021,19/10/2021,,"SI--PCB2B85 FS","SI--PCB2B85","SI20PCB3B70 FS,SI20PCB3B80 FS,SI20PCB2B05 SS","SI20PCB3B70,SI20PCB3B80,SI20PCB2B05",34,34,63,,8,8,14,,7,208,"HK1003 -Blackpoint D2 - Rev.0E DD30092021"
1-2383,SI20PCB4B25,"TRANSPORT TO SKIDDER SERVICE COOLING WATER PUMP 20PCB (AIR CARGO, needs to arrive at Skidder 30.12.21)",5121,"HK1003-Rev.0E-3",TT_Task,"55902",-,-,-,0,TK_NotStart,17/11/2021,,10/01/2022,,"SI20PCB3B80 FS","SI20PCB3B80","SI20PCB4M24 FS,SI20---3B10 FS","SI20PCB4M24,SI20---3B10",67,,75,,15,,17,,38,208,"HK1003 -Blackpoint D2 - Rev.0E DD30092021"
1-2384,SI20PCB4M25,"TRANSPORT MODULE 20PCB10Y",5121,"HK1003-Rev.0E-3",TT_Task,"55902",-,-,-,0,TK_NotStart,30/04/2022,,03/06/2022,,"SI20PCB3M80 FS","SI20PCB3M80","SI20PCB4-40 FS","SI20PCB4-40",91,,95,,21,,22,,60,1104,"HK1003 -Blackpoint D2 - Rev.0E DD30092021"
1-2385,SI20PCB4M24,"DELIVERY OF COMPONENTS MODULE_PCB PUMP / DEBRIS FILTER",5121,"HK1003-Rev.0E-3",TT_FinMile,"55902",-,-,-,0,TK_NotStart,10/01/2022,,10/01/2022,,"SI20PDB4B14 FS,SI20PCB4B25 FS","SI20PDB4B14,SI20PCB4B25","SI20---3B10 FS","SI20---3B10",75,,75,,17,,17,,45,208,"HK1003 -Blackpoint D2 - Rev.0E DD30092021"
1-2386,SI20LCA6A16,"ERECTION, NDT, PIPES / VALVES 20LCA - UNDER HRSG INLET DUCT",5121,"HK1003-Rev.0E-3",TT_Task,"55902",-,-,-,0,TK_NotStart,19/06/2022,,02/07/2022,,"SI20--P6A00& SS,SI---1P6A05 FS,SI20HB-6E33 FS","SI20--P6A00&,SI---1P6A05,SI20HB-6E33","SI20LAC8B10 FS,SI20LD8B110 FS,SI20LCA8M10 FS,SI--LCA6H15# FF,SI--LCA6H15# SS,SI20LCA6A15 FS,SI20-6-16# FF,SI20-6-16# SS","SI20LAC8B10,SI20LD8B110,SI20LCA8M10,SI--LCA6H15#,SI--LCA6H15#,SI20LCA6A15,SI20-6-16#,SI20-6-16#",98,,100,,22,,23,,70,616,"HK1003 -Blackpoint D2 - Rev.0E DD30092021"
1-2387,SP--B--2-60,"FUPs AVAILABLE",5121,"HK1003-Rev.0E-3",TT_Mile,"55902",-,-,-,100,TK_Complete,21/08/2021,21/08/2021,21/08/2021,21/08/2021,"SI--C--2C55 FS,SI--3332-24 FS,SI--3332-26 FS,SI--3332-27 FS,SP--B--2-59 FS","SI--C--2C55,SI--3332-24,SI--3332-26,SI--3332-27,SP--B--2-59","SI20CJ-2-50 FS,SI20CHY3-26 FS","SI20CJ-2-50,SI20CHY3-26",55,55,55,55,12,12,12,12,27,,"HK1003 -Blackpoint D2 - Rev.0E DD30092021"
1-2388,SI20UBA7-25,"CABLING INTERNAL ELECTRICAL MODULES 20UBA7910/20- PART OF ELECTRICAL MODULES ASSEMBLY",5121,"HK1003-Rev.0E-3",TT_Task,"55902",-,-,-,0,TK_NotStart,22/08/2022,,04/09/2022,,"SI--PEI7-20 SS,SI--PEI7-20 FS,SI--PEE7-20 FS,SI20BZK4-41 FS,SI--B--7-55 FS,SI--B--2-68 SS,SI--UBA2K05 FS,SI--2227-68 FS,SI20UBA5B45 FS,SI20UBA7-15 SS,SI20BZK7-25 FS,SI20UBA7-26 FS,SI20UBA7-26 FF,SI20UBA5-15 FS,SI20UBA5B45 FF,SI20BZK7-25 SS,SI--B--2-93 FS","SI--PEI7-20,SI--PEI7-20,SI--PEE7-20,SI20BZK4-41,SI--B--7-55,SI--B--2-68,SI--UBA2K05,SI--2227-68,SI20UBA5B45,SI20UBA7-15,SI20BZK7-25,SI20UBA7-26,SI20UBA7-26,SI20UBA5-15,SI20UBA5B45,SI20BZK7-25,SI--B--2-93","SI20BZK7B27 FS,SI20SGM6-15 FS,SI20CHA8-10 FS,SI20CPD8-11 FS,SI20BZK7A25 FF,SI20BAW5A15 FS,SI20BZK7A26 FF,SI20CPA8-10 SS,SI20SGJ6A15 FS,SI--CYA7A15 FS,SI20SGC6J15 FS,SI20BZK7D25 FS,SI20BBA8-10 FS,SI--2226-55 FS,SI--2222-35 FS,SI20CJ-8-25 FS,SI20SGY7A31 FS,SI20MKC8-75 FS,SI20MKC8-76 FS,SI20SGC6J20 FS,SI20SGM6-20 FS,SI20BZK7D10# FF,SI20BZK7D10# SS,SI20UBA8-12 FS,SI20BBA8-38 FS,SI20BBA8-49 FS,SI20BBA8-48 FS","SI20BZK7B27,SI20SGM6-15,SI20CHA8-10,SI20CPD8-11,SI20BZK7A25,SI20BAW5A15,SI20BZK7A26,SI20CPA8-10,SI20SGJ6A15,SI--CYA7A15,SI20SGC6J15,SI20BZK7D25,SI20BBA8-10,SI--2226-55,SI--2222-35,SI20CJ-8-25,SI20SGY7A31,SI20MKC8-75,SI20MKC8-76,SI20SGC6J20,SI20SGM6-20,SI20BZK7D10#,SI20BZK7D10#,SI20UBA8-12,SI20BBA8-38,SI20BBA8-49,SI20BBA8-48",107,,109,,25,,25,,78,656,"HK1003 -Blackpoint D2 - Rev.0E DD30092021"
1-2389,SI20UBA7-104,"CABLING INTERNAL 20UBA7710/20 - PART OF ELECTRICAL MODULES ASSEMBLY",5121,"HK1003-Rev.0E-3",TT_Task,"55902",-,-,-,0,TK_NotStart,12/08/2022,,25/08/2022,,"SI--PEI7-20 FS,SI20BZK4-41 FS,SI--B--7-55 FS,SI--B--2-68 SS,SI--UBA2K05 FS,SI20BZP7-160 FS,SI20UBA7-17 FF,SI20UBA4-42 FS,SI20BZK7-25 FS,SI20UBA7-102 FS,SI20UBA5B47 FS,SI--B--2-93 FS","SI--PEI7-20,SI20BZK4-41,SI--B--7-55,SI--B--2-68,SI--UBA2K05,SI20BZP7-160,SI20UBA7-17,SI20UBA4-42,SI20BZK7-25,SI20UBA7-102,SI20UBA5B47,SI--B--2-93","SI20UBA8-11 FS,SI20UMC5D50 FS,SI20BFC8-10 FS,SI20BZL7-38 SS,SI20BZK7A27 FF,SI20SGC6J15 FS,SI20UBA8-12 FS,SI20SGY7A15 FS,SI20CPA8-10 FS,SI20BFT8-10 FS,SI20MBA8-10 FS,SI20BFA8-10 FS,SI20BBA8-10 FS,SI20CHA8-11 FS,SI20CPC8-10 FS,SI20SGM6-15 FS,SI--CYA7A15 FS,SI20CJ-8-10 FS,SI20BZK7A28 FS,SI--2226-55 FS,SI--2222-35 FS,SI20CJ-8-25 FS,SI20UBA7-30 SS,SI20BZK7B26 FS,SI--BRU8-22 FS,SI20CR-8-10 FS,SI20BZK7D10# FF,SI20BZK7D10# SS,SI20BZK7B41 FS,SI20BZK7B48 FS,SI20BFT8-78 FS,SI20BBA8-38 FS,SI20BBA8-49 FS,SI20BBA8-48 FS","SI20UBA8-11,SI20UMC5D50,SI20BFC8-10,SI20BZL7-38,SI20BZK7A27,SI20SGC6J15,SI20UBA8-12,SI20SGY7A15,SI20CPA8-10,SI20BFT8-10,SI20MBA8-10,SI20BFA8-10,SI20BBA8-10,SI20CHA8-11,SI20CPC8-10,SI20SGM6-15,SI--CYA7A15,SI20CJ-8-10,SI20BZK7A28,SI--2226-55,SI--2222-35,SI20CJ-8-25,SI20UBA7-30,SI20BZK7B26,SI--BRU8-22,SI20CR-8-10,SI20BZK7D10#,SI20BZK7D10#,SI20BZK7B41,SI20BZK7B48,SI20BFT8-78,SI20BBA8-38,SI20BBA8-49,SI20BBA8-48",105,,107,,24,,25,,77,464,"HK1003 -Blackpoint D2 - Rev.0E DD30092021"
1-2390,SI20BFA8-36,"TEMPORARY POWER AVAILABLE FOR COMMISSIONING (400A/400V)",5121,"HK1003-Rev.0E-3",TT_Mile,"55902",-,-,-,0,TK_NotStart,07/02/2023,,07/02/2023,,"SI-----1-05 FS,SI--9998-20& FS,SI--9998-100 FS,SI--9998-105 FS","SI-----1-05,SI--9998-20&,SI--9998-100,SI--9998-105","SI20BFA8-25 FS,SI20BZK7-201 FS,SI-PM-40 FS,SI20UBA8G30 FS","SI20BFA8-25,SI20BZK7-201,SI-PM-40,SI20UBA8G30",131,,131,,30,,30,,89,16,"HK1003 -Blackpoint D2 - Rev.0E DD30092021"
1-2391,SI20PAC3B80,"(RFS) READY FOR SHIPMENT CIRC. CW PUMP 20PAC",5121,"HK1003-Rev.0E-3",TT_FinMile,"55902",-,-,-,0,TK_NotStart,30/04/2022,,30/04/2022,,"SI20PAC4B10 FS","SI20PAC4B10","SI--PAC2B05 FS,SI20PAC4B25 FS","SI--PAC2B05,SI20PAC4B25",91,,91,,21,,21,,60,384,"HK1003 -Blackpoint D2 - Rev.0E DD30092021"
1-2392,SI20PAS4B10,"LOGISTICS AND CUSTOMS PREPARATION - CT MAKE-UP WATER PUMP PAS",5121,"HK1003-Rev.0E-3",TT_Task,"55902",-,-,-,0,TK_NotStart,01/12/2021,,28/12/2021,,"SI20PAS3B70 FS","SI20PAS3B70","SI20PAS3B80 FS,SI20PAA2-55 SS","SI20PAS3B80,SI20PAA2-55",69,,73,,16,,17,,40,2480,"HK1003 -Blackpoint D2 - Rev.0E DD30092021"
1-2393,SI20PAS3B70,"TIMES OF COMPLETION (FINAL DATA IN KANLOG) - CT MAKE-UP WATER PUMP PAS",5121,"HK1003-Rev.0E-3",TT_FinMile,"55902",-,-,-,0,TK_NotStart,30/11/2021,,30/11/2021,,"SI20PAS3B25 FS","SI20PAS3B25","SI20PAS4B10 FS","SI20PAS4B10",69,,69,,16,,16,,40,2480,"HK1003 -Blackpoint D2 - Rev.0E DD30092021"
1-2394,SI20LCA4B10,"LOGISTICS AND CUSTOMS PREPARATION CONDENSATE RECIRC.PUMP 20LCA51",5121,"HK1003-Rev.0E-3",TT_Task,"55902",-,-,-,0,TK_NotStart,20/10/2021,,16/11/2021,,"SI20LCA3B70 FS","SI20LCA3B70","SI20LCA3B80 FS","SI20LCA3B80",63,,67,,14,,15,,35,208,"HK1003 -Blackpoint D2 - Rev.0E DD30092021"
1-2395,SI20LCA3B70,"TIMES OF COMPLETION (FINAL DATA IN KANLOG) CONDENSATE RECIRC.PUMP 20LCA51",5121,"HK1003-Rev.0E-3",TT_FinMile,"55902",-,-,-,0,TK_NotStart,19/10/2021,,19/10/2021,,"SI20LCA3B39 FS","SI20LCA3B39","SI20LCA4B10 FS","SI20LCA4B10",63,,63,,14,,14,,35,208,"HK1003 -Blackpoint D2 - Rev.0E DD30092021"
1-2396,SI20LBF4B10,"LOGISTICS AND CUSTOMS PREPARATION - BYPASS STATION 20LBF",5121,"HK1003-Rev.0E-3",TT_Task,"55902",-,-,-,0,TK_NotStart,07/03/2022,,03/04/2022,,"SI20LBF3B70 FS","SI20LBF3B70","SI20LBF3B80 FS","SI20LBF3B80",83,,87,,19,,20,,52,1736,"HK1003 -Blackpoint D2 - Rev.0E DD30092021"
1-2397,SI20LBF3B70,"TIMES OF COMPLETION (FINAL DATA IN KANLOG) - BYPASS STATION 20LBF",5121,"HK1003-Rev.0E-3",TT_FinMile,"55902",-,-,-,0,TK_NotStart,06/03/2022,,06/03/2022,,"SI20LBF3B25 FS","SI20LBF3B25","SI20LBF4B10 FS","SI20LBF4B10",83,,83,,19,,19,,52,1736,"HK1003 -Blackpoint D2 - Rev.0E DD30092021"
1-2398,SI20LBH4B10,"LOGISTICS AND CUSTOMS PREPARATION BLOW DOWN TANK 20LBH",5121,"HK1003-Rev.0E-3",TT_Task,"55902",-,-,-,0,TK_NotStart,10/02/2022,,09/03/2022,,"SI20LBH3B70 FS","SI20LBH3B70","SI20LBH3D80 FS","SI20LBH3D80",79,,83,,18,,19,,49,456,"HK1003 -Blackpoint D2 - Rev.0E DD30092021"
1-2399,SI20LBH3B70,"TIMES OF COMPLETION (FINAL DATA IN KANLOG) BLOW DOWN TANK 20LBH",5121,"HK1003-Rev.0E-3",TT_FinMile,"55902",-,-,-,0,TK_NotStart,09/02/2022,,09/02/2022,,"SI20LBH3D25 FS","SI20LBH3D25","SI20LBH4B10 FS","SI20LBH4B10",79,,79,,18,,18,,48,456,"HK1003 -Blackpoint D2 - Rev.0E DD30092021"
1-2400,SI20UBY5-48,"(RFE) FOUNDATION 20UBY01",5121,"HK1003-Rev.0E-3",TT_FinMile,"55902",-,-,-,0,TK_NotStart,01/07/2022,,01/07/2022,,"SI20UBY5-47 FS","SI20UBY5-47","SI20BAA7-15 FS,SI20BZP7-90 FS","SI20BAA7-15,SI20BZP7-90",99,,99,,23,,23,,72,144,"HK1003 -Blackpoint D2 - Rev.0E DD30092021"
1-2401,SI20UBY5-47,"CONSTRUCTION FOUNDATION 20UBY01",5121,"HK1003-Rev.0E-3",TT_Task,"55902",-,-,-,0,TK_NotStart,18/06/2022,,01/07/2022,,"SI20UBY5-10 SS","SI20UBY5-10","SI20UBY5-48 FS","SI20UBY5-48",98,,99,,22,,23,,70,144,"HK1003 -Blackpoint D2 - Rev.0E DD30092021"
1-2402,SI20UBY5-06,"WORK PREPARATION, EXCAVATION 20UBY01",5121,"HK1003-Rev.0E-3",TT_Task,"55902",-,-,-,0,TK_NotStart,04/06/2022,,17/06/2022,,"SI--UBX2A75 FS,SI-----5-22 FS,SI--UBA2-75 FS,SI20UBY2-40 FS,CLP20ULZ5-82 FS,SI-----5-21& FS,SI-----5-20 FS,CLP20ULZ5-80 FS,SI20UBA5-17 FS,SI20UBZ5-64 FS,SI-P222-84 FS,SI20UBY2-70 FS","SI--UBX2A75,SI-----5-22,SI--UBA2-75,SI20UBY2-40,CLP20ULZ5-82,SI-----5-21&,SI-----5-20,CLP20ULZ5-80,SI20UBA5-17,SI20UBZ5-64,SI-P222-84,SI20UBY2-70","SI20UBY5-10 FS,SI-P222-131# FF,SI-P222-131# SS","SI20UBY5-10,SI-P222-131#,SI-P222-131#",96,,97,,22,,22,,68,144,"HK1003 -Blackpoint D2 - Rev.0E DD30092021"
1-2403,SI20UBY5-10,"(H) START PLACING FORMWORK 20UBY01",5121,"HK1003-Rev.0E-3",TT_Mile,"55902",-,-,-,0,TK_NotStart,18/06/2022,,18/06/2022,,"SI20UBY5-06 FS,SI-----5-21& FS,SI20UBY2-71 FS","SI20UBY5-06,SI-----5-21&,SI20UBY2-71","SI20UBY5-47 SS","SI20UBY5-47",98,,98,,22,,22,,70,144,"HK1003 -Blackpoint D2 - Rev.0E DD30092021"
1-2404,SI--CYA4-10,"LOGISTICS AND CUSTOMS PREPARATION TELECOMMUNICATION CYA",5121,"HK1003-Rev.0E-3",TT_Task,"55902",-,-,-,0,TK_NotStart,28/08/2022,,24/09/2022,,"SI--CYA3-70 FS","SI--CYA3-70","SI--CYA3-80 FS","SI--CYA3-80",108,,112,,25,,26,,79,136,"HK1003 -Blackpoint D2 - Rev.0E DD30092021"
1-2405,SI--CYA3-70,"TIMES OF COMPLETION (FINAL DATA IN KANLOG)  TELECOMMUNICATION CYA",5121,"HK1003-Rev.0E-3",TT_FinMile,"55902",-,-,-,0,TK_NotStart,27/08/2022,,27/08/2022,,"SI--CYA3-25 FS","SI--CYA3-25","SI--CYA4-10 FS","SI--CYA4-10",108,,108,,25,,25,,79,136,"HK1003 -Blackpoint D2 - Rev.0E DD30092021"
1-2406,SI--BZP4-12,"LOGISTICS AND CUSTOMS PREPARATION LIGHTING & SMALL POWER BZL",5121,"HK1003-Rev.0E-3",TT_Task,"55902",-,-,-,0,TK_NotStart,04/05/2022,,31/05/2022,,"SI--BZL3-70 FS","SI--BZL3-70","SI--BZL3-80 FS","SI--BZL3-80",91,,95,,21,,22,,61,240,"HK1003 -Blackpoint D2 - Rev.0E DD30092021"
1-2407,SI--BZL3-70,"TIMES OF COMPLETION (FINAL DATA IN KANLOG)  LIGHTING & SMALL POWER BZL",5121,"HK1003-Rev.0E-3",TT_FinMile,"55902",-,-,-,0,TK_NotStart,03/05/2022,,03/05/2022,,"SI--BZL3-81 FS","SI--BZL3-81","SI--BZP4-12 FS","SI--BZP4-12",91,,91,,21,,21,,61,240,"HK1003 -Blackpoint D2 - Rev.0E DD30092021"
1-2408,SI--BZP4-10,"LOGISTICS AND CUSTOMS PREPARATION CABLE SUPPORT SYSTEM BZP (LOT 1)",5121,"HK1003-Rev.0E-3",TT_Task,"55902",-,-,-,0,TK_NotStart,26/01/2022,,22/02/2022,,"SI--BZP3-70 FS","SI--BZP3-70","SI--BZP3-80 FS","SI--BZP3-80",77,,81,,18,,19,,46,144,"HK1003 -Blackpoint D2 - Rev.0E DD30092021"
1-2409,SI--BZP3-70,"TIMES OF COMPLETION (FINAL DATA IN KANLOG) CABLE SUPPORT SYSTEM BZP (LOT 1)",5121,"HK1003-Rev.0E-3",TT_FinMile,"55902",-,-,-,0,TK_NotStart,25/01/2022,,25/01/2022,,"SI--BZP3-25 FS","SI--BZP3-25","SI--BZP4-10 FS","SI--BZP4-10",77,,77,,18,,18,,46,144,"HK1003 -Blackpoint D2 - Rev.0E DD30092021"
1-2410,SI--BAW4-10,"LOGISTICS AND CUSTOMS PREPARATION IN- / OUTDOOR GROUNDING BAW",5121,"HK1003-Rev.0E-3",TT_Task,"55902",-,-,-,0,TK_NotStart,09/03/2022,,05/04/2022,,"SI--BAW3-70 FS","SI--BAW3-70","SI--BAW3-80 FS,SI--BAW2-05 SS","SI--BAW3-80,SI--BAW2-05",83,,87,,19,,20,,52,1560,"HK1003 -Blackpoint D2 - Rev.0E DD30092021"
1-2411,SI--BAW3-70,"TIMES OF COMPLETION (FINAL DATA IN KANLOG) IN- / OUTDOOR GROUNDING BAW",5121,"HK1003-Rev.0E-3",TT_FinMile,"55902",-,-,-,0,TK_NotStart,08/03/2022,,08/03/2022,,"SI--BAW3-25 FS","SI--BAW3-25","SI--BAW4-10 FS","SI--BAW4-10",83,,83,,19,,19,,52,1560,"HK1003 -Blackpoint D2 - Rev.0E DD30092021"
1-2412,SP20UBA3H80,"(RFS) READY FOR SHIPMENT ELECTRICAL MODULES 20UBA7910/20",5121,"HK1003-Rev.0E-3",TT_FinMile,"55902",-,-,-,0,TK_NotStart,02/06/2022,,02/06/2022,,"SP20UBA4-10 FS","SP20UBA4-10","SI--UBA2K05 FS,SI20UBA4H25 FS","SI--UBA2K05,SI20UBA4H25",95,,95,,22,,22,,68,584,"HK1003 -Blackpoint D2 - Rev.0E DD30092021"
1-2413,SI20PDB4B10,"LOGISTICS AND CUSTOMS PREPARATION DEBRIS FILTER 20PDB",5121,"HK1003-Rev.0E-3",TT_Task,"55902",-,-,-,0,TK_NotStart,23/10/2021,,19/11/2021,,"SI20PDB3B70 FS","SI20PDB3B70","SI20PDB3B80 FS","SI20PDB3B80",64,,67,,14,,15,,36,208,"HK1003 -Blackpoint D2 - Rev.0E DD30092021"
1-2414,SI20PDB3B70,"TIMES OF COMPLETION (FINAL DATA IN KANLOG) DEBRIS FILTER 20PDB",5121,"HK1003-Rev.0E-3",TT_FinMile,"55902",-,-,-,0,TK_NotStart,22/10/2021,,22/10/2021,,"SI20PDB3B25 FS","SI20PDB3B25","SI20PDB4B10 FS","SI20PDB4B10",63,,63,,14,,14,,35,208,"HK1003 -Blackpoint D2 - Rev.0E DD30092021"
1-2415,SI20PAH4B10,"LOGISTICS AND CUSTOMS PREPARATION CONDENSER TUBE CLEANING SYSTEM 20PAH  (BALL STRAINER)",5121,"HK1003-Rev.0E-3",TT_Task,"55902",-,-,-,0,TK_NotStart,16/11/2021,,13/12/2021,,"SI20PAH3B70 FS","SI20PAH3B70","SI20PAH3-80 FS","SI20PAH3-80",67,,71,,15,,16,,38,1016,"HK1003 -Blackpoint D2 - Rev.0E DD30092021"
1-2416,SI20PAH3B70,"TIMES OF COMPLETION (FINAL DATA IN KANLOG) CONDENSER TUBE CLEANING SYSTEM 20PAH  (BALL STRAINER)",5121,"HK1003-Rev.0E-3",TT_FinMile,"55902",-,-,-,0,TK_NotStart,16/11/2021,,16/11/2021,,"SI20PAH3-26 FS","SI20PAH3-26","SI20PAH4B10 FS","SI20PAH4B10",67,,67,,15,,15,,38,1016,"HK1003 -Blackpoint D2 - Rev.0E DD30092021"
1-2417,SI20SCA4B10,"LOGISTICS AND CUSTOMS PREPARATION AIR COMPRESSOR SYSTEM 20SCA",5121,"HK1003-Rev.0E-3",TT_Task,"55902",-,-,-,0,TK_NotStart,29/06/2022,,26/07/2022,,"SI20SCA3B70 FS","SI20SCA3B70","SI20SCA3-80 FS","SI20SCA3-80",99,,103,,23,,24,,71,288,"HK1003 -Blackpoint D2 - Rev.0E DD30092021"
1-2418,SI20SCA3B70,"TIMES OF COMPLETION (FINAL DATA IN KANLOG) AIR COMPRESSOR SYSTEM 20SCA",5121,"HK1003-Rev.0E-3",TT_FinMile,"55902",-,-,-,0,TK_NotStart,28/06/2022,,28/06/2022,,"SI20SCA3-26 FS","SI20SCA3-26","SI20SCA4B10 FS","SI20SCA4B10",99,,99,,23,,23,,71,288,"HK1003 -Blackpoint D2 - Rev.0E DD30092021"
1-2419,SI20LBG4C10,"LOGISTICS AND CUSTOMS PREPARATION EL.SUPERHEATER 20LBG",5121,"HK1003-Rev.0E-3",TT_Task,"55902",-,-,-,0,TK_NotStart,31/01/2022,,27/02/2022,,"SI20LBG3C70 FS","SI20LBG3C70","SI20LBG3C80 FS","SI20LBG3C80",78,,82,,18,,19,,47,616,"HK1003 -Blackpoint D2 - Rev.0E DD30092021"
1-2420,SI20LBG3C70,"TIMES OF COMPLETION (FINAL DATA IN KANLOG) EL.SUPERHEATER 20LBG",5121,"HK1003-Rev.0E-3",TT_FinMile,"55902",-,-,-,0,TK_NotStart,30/01/2022,,30/01/2022,,"SI20LBG3C26 FS","SI20LBG3C26","SI20LBG4C10 FS","SI20LBG4C10",78,,78,,18,,18,,47,616,"HK1003 -Blackpoint D2 - Rev.0E DD30092021"
1-2421,SI20LCL4B10,"LOGISTICS AND CUSTOMS PREPARATION BOILER BLOWDOWN PUMP 20LCL",5121,"HK1003-Rev.0E-3",TT_Task,"55902",-,-,-,0,TK_NotStart,29/04/2022,,26/05/2022,,"SI20LCL3B70 FS","SI20LCL3B70","SI20LCL3B80 FS","SI20LCL3B80",90,,94,,21,,22,,60,336,"HK1003 -Blackpoint D2 - Rev.0E DD30092021"
1-2422,SI20LCL3B70,"TIMES OF COMPLETION (FINAL DATA IN KANLOG) BOILER BLOWDOWN PUMP 20LCL",5121,"HK1003-Rev.0E-3",TT_FinMile,"55902",-,-,-,0,TK_NotStart,28/04/2022,,28/04/2022,,"SI20LCL3B26 FS","SI20LCL3B26","SI20LCL4B10 FS","SI20LCL4B10",90,,90,,21,,21,,59,336,"HK1003 -Blackpoint D2 - Rev.0E DD30092021"
1-2423,SI20MBR8-27,"COLD COMMISSIONING EXHAUST DIFFUSER 20MBR",5121,"HK1003-Rev.0E-3",TT_Task,"55902",-,-,-,0,TK_NotStart,16/06/2023,,22/06/2023,,"SI20MBR8-26 FS,SI20MBA8-10 FS,SI-PM-40 FS,SI20MBA8-25 SS,SI20MB-8E25 FS","SI20MBR8-26,SI20MBA8-10,SI-PM-40,SI20MBA8-25,SI20MB-8E25","SI20MB-9-05 FS","SI20MB-9-05",149,,150,,34,,35,,98,8,"HK1003 -Blackpoint D2 - Rev.0E DD30092021"
1-2424,SI20MBR8-26,"(TOP-20MBR) GT EXHAUST DIFFUSER 20MBR",5121,"HK1003-Rev.0E-3",TT_FinMile,"55902",-,-,-,0,TK_NotStart,27/04/2023,,27/04/2023,,"SI20MBR6-48 FS,SI20BZK7L25 FS,SI20MBR7-15 FS,SI20BZK7F26 FS,SI20BZK7F26 FF,SI20MBA8-23& FS","SI20MBR6-48,SI20BZK7L25,SI20MBR7-15,SI20BZK7F26,SI20BZK7F26,SI20MBA8-23&","SI20MBR8-27 FS,SI20MBA8-10 FS","SI20MBR8-27,SI20MBA8-10",142,,142,,33,,33,,96,8,"HK1003 -Blackpoint D2 - Rev.0E DD30092021"
1-2425,SI--HA-2-95,"PREL. ELECTRICAL LOAD DATA  (VEL) LV HRSG",5121,"HK1003-Rev.0E-3",TT_Mile,"55902",-,-,-,100,TK_Complete,22/01/2021,22/01/2021,22/01/2021,22/01/2021,"SI--HA-2-05 SS","SI--HA-2-05","SP--B--2-50 SS,SI20CJF2-15 FS","SP--B--2-50,SI20CJF2-15",24,24,24,24,5,5,5,5,2,,"HK1003 -Blackpoint D2 - Rev.0E DD30092021"
1-2426,SI--5552-85,"CONTRACT INTO FORCE MAIN CIVIL WORKS",5121,"HK1003-Rev.0E-3",TT_Mile,"55902",-,-,-,100,TK_Complete,14/05/2021,14/05/2021,14/05/2021,14/05/2021,"SI--5552-10# FS,SI--5552-13 FS,SI--5552-81 FS,SI20PUR2J86 FS","SI--5552-10#,SI--5552-13,SI--5552-81,SI20PUR2J86","SI--5555-15 FS,SI--5552-24 FS,SI20UMC2B66 FS,SI--UMC2B82 FS,SI20PUR2J87 FS,SI20UZx2-43 FS,SI-P222-87 FS,SI-P222-84 FS,SI-P222-163 FS,SI-P222-165 SS,SI-P222-151 FS,SI--3335-62 FS,SI--URD2-70 FS,SI--URA2-70 FS","SI--5555-15,SI--5552-24,SI20UMC2B66,SI--UMC2B82,SI20PUR2J87,SI20UZx2-43,SI-P222-87,SI-P222-84,SI-P222-163,SI-P222-165,SI-P222-151,SI--3335-62,SI--URD2-70,SI--URA2-70",40,40,40,40,9,9,9,9,12,,"HK1003 -Blackpoint D2 - Rev.0E DD30092021"
1-2427,SI--5552-81,"QUOTATION STAGE MAIN CIVIL WORKS",5121,"HK1003-Rev.0E-3",TT_Task,"55902",-,-,-,100,TK_Complete,01/02/2021,01/02/2021,13/05/2021,13/05/2021,"SI--5552-10 FS,SI--5552-11 FS,SI--U--2-87 FS","SI--5552-10,SI--5552-11,SI--U--2-87","SI--5552-13 FF,SI--5552-85 FS","SI--5552-13,SI--5552-85",26,26,40,40,6,6,9,9,3,,"HK1003 -Blackpoint D2 - Rev.0E DD30092021"
1-2428,SI--5552-11,"PREPARE RFQ MAIN CIVIL WORKS",5121,"HK1003-Rev.0E-3",TT_Task,"55902",-,-,-,100,TK_Complete,13/12/2020,13/12/2020,31/01/2021,31/01/2021,"SI--5552-10 FS,SI-----1-03 FS","SI--5552-10,SI-----1-03","SI--5552-10# SS,SI--5552-81 FS,SI--U--2-87 SS","SI--5552-10#,SI--5552-81,SI--U--2-87",19,19,26,26,4,4,6,6,1,,"HK1003 -Blackpoint D2 - Rev.0E DD30092021"
1-2429,SI--5555-15,"MOBILISATION OF CONTRACTOR (MAIN CIVIL WORKS)",5121,"HK1003-Rev.0E-3",TT_Task,"55902",-,-,-,100,TK_Complete,01/06/2021,01/06/2021,01/07/2021,01/07/2021,"SI--2222-32 SS,SI--5552-85 FS","SI--2222-32,SI--5552-85","SI--3335-65 FF,SI20URA5-06 FS,SI-----5-21& FS,SI20UMC5Z15 FS","SI--3335-65,SI20URA5-06,SI-----5-21&,SI20UMC5Z15",43,43,47,47,10,10,11,11,15,,"HK1003 -Blackpoint D2 - Rev.0E DD30092021"
1-2430,SP20MKC4-10,"LOGISTICS AND CUSTOMS PREPARATION SEE/SFC TRANSFORMER 20MKC / 20MBJ",5121,"HK1003-Rev.0E-3",TT_Task,"55902",-,-,-,0,TK_NotStart,02/04/2022,,29/04/2022,,"SP20MKC3-70 FS","SP20MKC3-70","SP20MKC3-80 FS","SP20MKC3-80",87,,90,,20,,21,,55,640,"HK1003 -Blackpoint D2 - Rev.0E DD30092021"
1-2431,SP20MKC3-70,"TIMES OF COMPLETION (FINAL DATA IN KANLOG) SEE/SFC TRANSFORMER 20MKC / 20MBJ",5121,"HK1003-Rev.0E-3",TT_Mile,"55902",-,-,-,0,TK_NotStart,02/04/2022,,02/04/2022,,"SP20MKC3-25 FS","SP20MKC3-25","SP20MKC4-10 FS","SP20MKC4-10",87,,87,,20,,20,,55,640,"HK1003 -Blackpoint D2 - Rev.0E DD30092021"
1-2432,SI20MB-4-12,"LOGISTICS AND CUSTOMS PREPARATION GT ACCESSORY EQUIPMENT MB",5121,"HK1003-Rev.0E-3",TT_Task,"55902",-,-,-,0,TK_NotStart,02/04/2022,,29/04/2022,,"SI20MB-3-72 FS","SI20MB-3-72","SI20MB-3B80 FS","SI20MB-3B80",87,,90,,20,,21,,55,504,"HK1003 -Blackpoint D2 - Rev.0E DD30092021"
1-2433,SI20MB-3-72,"TIMES OF COMPLETION (FINAL DATA IN KANLOG) GT ACCESSORY EQUIPMENT / CCR / IN-LINE COMPONENTS GT-PIPING MB",5121,"HK1003-Rev.0E-3",TT_FinMile,"55902",-,-,-,0,TK_NotStart,01/04/2022,,01/04/2022,,"SP20MBK3-25 FF,SP20MB-3-251 FS,SP20MBK3-25 FS","SP20MBK3-25,SP20MB-3-251,SP20MBK3-25","SP20MBX3-70 FS,SP20MBP3-71 FS,SP20MBK3-70 FS,SI20MB-4-12 FS","SP20MBX3-70,SP20MBP3-71,SP20MBK3-70,SI20MB-4-12",86,,86,,20,,20,,55,504,"HK1003 -Blackpoint D2 - Rev.0E DD30092021"
1-2434,SI20MAW4M10,"LOGISTICS AND CUSTOMS PREPARATION MODULE MAW10Y",5121,"HK1003-Rev.0E-3",TT_Task,"55902",-,-,-,0,TK_NotStart,03/02/2022,,02/03/2022,,"SI20MAW3M70 FS","SI20MAW3M70","SI20MAW3M80 FS","SI20MAW3M80",78,,82,,18,,19,,48,720,"HK1003 -Blackpoint D2 - Rev.0E DD30092021"
1-2435,SI20MAW3M70,"TIMES OF COMPLETION (FINAL DATA IN KANLOG) MODULE 20MAW10Y",5121,"HK1003-Rev.0E-3",TT_FinMile,"55902",-,-,-,0,TK_NotStart,03/02/2022,,03/02/2022,,"SI20---3M70 FF","SI20---3M70","SI20MAW4M10 FS,SI20---3M109 FS","SI20MAW4M10,SI20---3M109",78,,78,,18,,18,,48,720,"HK1003 -Blackpoint D2 - Rev.0E DD30092021"
1-2436,SP20MB-4-10,"LOGISTICS AND CUSTOMS PREPARATION GT SUPPORTS 20MB-",5121,"HK1003-Rev.0E-3",TT_Task,"55902",-,-,-,0,TK_NotStart,02/04/2022,,29/04/2022,,"SP20MB-3-70 FS","SP20MB-3-70","SP20MB-3B80 FS","SP20MB-3B80",87,,90,,20,,21,,55,240,"HK1003 -Blackpoint D2 - Rev.0E DD30092021"
1-2437,SP20MB-3-70,"TIMES OF COMPLETION (FINAL DATA IN KANLOG) GT SUPPORTS 20MB-",5121,"HK1003-Rev.0E-3",TT_FinMile,"55902",-,-,-,0,TK_NotStart,01/04/2022,,01/04/2022,,"SP20MB-3D80 SS","SP20MB-3D80","SP20MB-4-10 FS","SP20MB-4-10",86,,86,,20,,20,,55,240,"HK1003 -Blackpoint D2 - Rev.0E DD30092021"
1-2438,SP--MB-4-10,"LOGISTICS AND CUSTOMS PREPARATION GT INSULATION MB-",5121,"HK1003-Rev.0E-3",TT_Task,"55902",-,-,-,0,TK_NotStart,02/04/2022,,29/04/2022,,"SP--MB-3-70 FS","SP--MB-3-70","SP--MB-3B80 FS","SP--MB-3B80",87,,90,,20,,21,,55,560,"HK1003 -Blackpoint D2 - Rev.0E DD30092021"
1-2439,SP--MB-3-70,"TIMES OF COMPLETION (FINAL DATA IN KANLOG) GT INSULATION MB-",5121,"HK1003-Rev.0E-3",TT_FinMile,"55902",-,-,-,0,TK_NotStart,01/04/2022,,01/04/2022,,"SP--MB-3G75 FS","SP--MB-3G75","SP--MB-4-10 FS","SP--MB-4-10",86,,86,,20,,20,,55,560,"HK1003 -Blackpoint D2 - Rev.0E DD30092021"
1-2440,SI20BFT4-10,"LOGISTICS AND CUSTOMS PREPARATION LV-TRANSFORMERS BFT",5121,"HK1003-Rev.0E-3",TT_Task,"55902",-,-,-,0,TK_NotStart,02/05/2022,,29/05/2022,,"SI20BFT3-70 FS","SI20BFT3-70","SI20BFT3-80 FS","SI20BFT3-80",91,,95,,21,,22,,61,816,"HK1003 -Blackpoint D2 - Rev.0E DD30092021"
1-2441,SI20BFT3-70,"TIMES OF COMPLETION (FINAL DATA IN KANLOG) LV-TRANSFORMERS BFT",5121,"HK1003-Rev.0E-3",TT_FinMile,"55902",-,-,-,0,TK_NotStart,01/05/2022,,01/05/2022,,"SI20BFT3-25 FS","SI20BFT3-25","SI20BFT4-10 FS","SI20BFT4-10",91,,91,,21,,21,,60,816,"HK1003 -Blackpoint D2 - Rev.0E DD30092021"
1-2442,SI20XKA4-10,"LOGISTICS AND CUSTOMS PREPARATION EMERGENCY DIESEL GEN.SET XKA",5121,"HK1003-Rev.0E-3",TT_Task,"55902",-,-,-,0,TK_NotStart,15/05/2022,,12/06/2022,,"SI20XKA3-70 FS","SI20XKA3-70","SI20XKA3-80 FS,SI20XKA2-05 SS","SI20XKA3-80,SI20XKA2-05",93,,97,,21,,22,,65,535,"HK1003 -Blackpoint D2 - Rev.0E DD30092021"
1-2443,SI20XKA3-70,"TIMES OF COMPLETION (FINAL DATA IN KANLOG) EMERGENCY DIESEL GEN.SET 00XKA",5121,"HK1003-Rev.0E-3",TT_FinMile,"55902",-,-,-,0,TK_NotStart,15/05/2022,,15/05/2022,,"SI20XKA3-25 FS","SI20XKA3-25","SI20XKA4-10 FS","SI20XKA4-10",93,,93,,21,,21,,65,535,"HK1003 -Blackpoint D2 - Rev.0E DD30092021"
1-2444,SI20BAC4-10,"LOGISTICS AND CUSTOMS PREPARATION GEN. CIRCUIT BREAKER 20BAC",5121,"HK1003-Rev.0E-3",TT_Task,"55902",-,-,-,0,TK_NotStart,23/05/2022,,19/06/2022,,"SI20BAC3-70 FS","SI20BAC3-70","SI20BAC3B80 FS","SI20BAC3B80",94,,98,,22,,22,,66,352,"HK1003 -Blackpoint D2 - Rev.0E DD30092021"
1-2445,SI20BAC3-70,"TIMES OF COMPLETION (FINAL DATA IN KANLOG) GEN. CIRCUIT BREAKER 20BAC",5121,"HK1003-Rev.0E-3",TT_FinMile,"55902",-,-,-,0,TK_NotStart,28/04/2022,,28/04/2022,,"SI20BAC3-25 FS","SI20BAC3-25","SI20BAC4-10 FS","SI20BAC4-10",90,,90,,21,,21,,59,352,"HK1003 -Blackpoint D2 - Rev.0E DD30092021"
1-2446,SI20BBT4-10,"LOGISTICS AND CUSTOMS PREPARATION AUX. TRANSFORMER 20BBT",5121,"HK1003-Rev.0E-3",TT_Task,"55902",-,-,-,0,TK_NotStart,23/04/2022,,20/05/2022,,"SI20BBT3-70 FF,SI20BBT3-70 FS","SI20BBT3-70,SI20BBT3-70","SI20BBT3B80 FF,SI20BBT3B80 FS","SI20BBT3B80,SI20BBT3B80",90,,93,,21,,21,,59,1072,"HK1003 -Blackpoint D2 - Rev.0E DD30092021"
1-2447,SI20BBT3-70,"TIMES OF COMPLETION (FINAL DATA IN KANLOG) AUX. TRANSFORMER 20BBT",5121,"HK1003-Rev.0E-3",TT_FinMile,"55902",-,-,-,0,TK_NotStart,22/04/2022,,22/04/2022,,"SI20BBT3-25 FS","SI20BBT3-25","SI20BBT4-10 FF,SI20BBT4-10 FS","SI20BBT4-10,SI20BBT4-10",89,,89,,20,,20,,59,1072,"HK1003 -Blackpoint D2 - Rev.0E DD30092021"
1-2448,SI20BAA4-10,"LOGISTICS AND CUSTOMS PREPARATION IPB 20BAA",5121,"HK1003-Rev.0E-3",TT_Task,"55902",-,-,-,0,TK_NotStart,07/06/2022,,04/07/2022,,"SI20BAA3-70 FS","SI20BAA3-70","SI20BAA3B80 FS","SI20BAA3B80",96,,100,,22,,23,,69,352,"HK1003 -Blackpoint D2 - Rev.0E DD30092021"
1-2449,SI20BAA3-70,"TIMES OF COMPLETION (FINAL DATA IN KANLOG) IPB 20BAA",5121,"HK1003-Rev.0E-3",TT_FinMile,"55902",-,-,-,0,TK_NotStart,06/06/2022,,06/06/2022,,"SI20BAA3-25 FS","SI20BAA3-25","SI20BAA4-10 FS","SI20BAA4-10",96,,96,,22,,22,,68,352,"HK1003 -Blackpoint D2 - Rev.0E DD30092021"
1-2450,SP20UBA4-10,"LOGISTICS AND CUSTOMS PREPARATION ELECTRICAL MODULES 20UBA7910/20",5121,"HK1003-Rev.0E-3",TT_Task,"55902",-,-,-,0,TK_NotStart,06/05/2022,,02/06/2022,,"SP20UBA3-70 FS","SP20UBA3-70","SP20UBA3H80 FS,SI20UBA3J20#1 FF","SP20UBA3H80,SI20UBA3J20#1",91,,95,,21,,22,,63,584,"HK1003 -Blackpoint D2 - Rev.0E DD30092021"
1-2451,SP20UBA3-70,"TIMES OF COMPLETION (FINAL DATA IN KANLOG) ELECTRICAL MODULES 20UBA7910/20",5121,"HK1003-Rev.0E-3",TT_FinMile,"55902",-,-,-,0,TK_NotStart,05/05/2022,,05/05/2022,,"SP20UBA3H55 FS","SP20UBA3H55","SP20UBA4-10 FS","SP20UBA4-10",91,,91,,21,,21,,63,584,"HK1003 -Blackpoint D2 - Rev.0E DD30092021"
1-2452,SP20SGJ4-10,"LOGISTICS AND CUSTOMS PREPARATION - FIRE FIGHTING / GAS DETECTION 20SGJ / 20CYQ / 20CYE",5121,"HK1003-Rev.0E-3",TT_Task,"55902",-,-,-,0,TK_NotStart,29/01/2022,,25/02/2022,,"SP20SGJ3-70 FS","SP20SGJ3-70","SP20SGJ4-80 FS","SP20SGJ4-80",78,,81,,18,,19,,47,1736,"HK1003 -Blackpoint D2 - Rev.0E DD30092021"
1-2453,SP20SGJ3-70,"TIMES OF COMPLETION (FINAL DATA IN KANLOG) - FIRE FIGHTING / GAS DETECTION 20SGJ / 20CYQ / 20CYE",5121,"HK1003-Rev.0E-3",TT_Mile,"55902",-,-,-,0,TK_NotStart,29/01/2022,,29/01/2022,,"SP20SGJ3-25 FS","SP20SGJ3-25","SP20SGJ4-10 FS","SP20SGJ4-10",78,,78,,18,,18,,47,1736,"HK1003 -Blackpoint D2 - Rev.0E DD30092021"
1-2454,SI20SGA4-10,"LOGISTICS AND CUSTOMS PREPARATION FIRE FIGHTING INDOOR HYRDANTS SGA 20UMC",5121,"HK1003-Rev.0E-3",TT_Task,"55902",-,-,-,0,TK_NotStart,18/03/2022,,14/04/2022,,"SI20SGA3-70 FS","SI20SGA3-70","SI20SGA3-80 FS","SI20SGA3-80",84,,88,,19,,20,,53,1016,"HK1003 -Blackpoint D2 - Rev.0E DD30092021"
1-2455,SI20SGA3-70,"TIMES OF COMPLETION (FINAL DATA IN KANLOG) FIRE FIGHTING INDOOR HYRDANTS SGA 20UMC",5121,"HK1003-Rev.0E-3",TT_FinMile,"55902",-,-,-,0,TK_NotStart,17/03/2022,,17/03/2022,,"SI20SGA3-25 FS","SI20SGA3-25","SI20SGA4-10 FS","SI20SGA4-10",84,,84,,19,,19,,53,1016,"HK1003 -Blackpoint D2 - Rev.0E DD30092021"
1-2456,SP20MKW4-10,"LOGISTICS AND CUSTOMS PREPARATION MK- AUXILIARIES SYSTEMS",5121,"HK1003-Rev.0E-3",TT_Task,"55902",-,-,-,0,TK_NotStart,02/04/2022,,29/04/2022,,"SP20MKW3-70 FS","SP20MKW3-70","SP20MKW3-80 FS","SP20MKW3-80",87,,90,,20,,21,,55,1136,"HK1003 -Blackpoint D2 - Rev.0E DD30092021"
1-2457,SP20MKW3-70,"TIMES OF COMPLETION (FINAL DATA IN KANLOG) MK- AUXILIARIES SYSTEMS",5121,"HK1003-Rev.0E-3",TT_Mile,"55902",-,-,-,0,TK_NotStart,02/04/2022,,02/04/2022,,"SP20MKW3-89 FS","SP20MKW3-89","SP20MKW4-10 FS","SP20MKW4-10",87,,87,,20,,20,,55,1136,"HK1003 -Blackpoint D2 - Rev.0E DD30092021"
1-2458,SP20MBX4-10,"LOGISTICS AND CUSTOMS PREPARATION INSTRUMENT AIR SKID TANK  MBX",5121,"HK1003-Rev.0E-3",TT_Task,"55902",-,-,-,0,TK_NotStart,02/04/2022,,29/04/2022,,"SP20MBX3-70 FS","SP20MBX3-70","SP20MBX3A80 FS","SP20MBX3A80",87,,90,,20,,21,,55,2296,"HK1003 -Blackpoint D2 - Rev.0E DD30092021"
1-2459,SP20MBX3-70,"TIMES OF COMPLETION (FINAL DATA IN KANLOG) INSTRUMENT AIR SKID TANK  MBX",5121,"HK1003-Rev.0E-3",TT_Mile,"55902",-,-,-,0,TK_NotStart,02/04/2022,,02/04/2022,,"SI20MB-3-72 FS,SP20MBX3A83 FS","SI20MB-3-72,SP20MBX3A83","SP20MBX4-10 FS","SP20MBX4-10",87,,87,,20,,20,,55,2296,"HK1003 -Blackpoint D2 - Rev.0E DD30092021"
1-2460,SP20MBP4-11,"LOGISTICS AND CUSTOMS PREPARATION GT FUEL GAS STRAINER SKID MBP",5121,"HK1003-Rev.0E-3",TT_Task,"55902",-,-,-,0,TK_NotStart,02/04/2022,,29/04/2022,,"SP20MBP3-71 FS","SP20MBP3-71","SP20MBP3A80 FS","SP20MBP3A80",87,,90,,20,,21,,55,504,"HK1003 -Blackpoint D2 - Rev.0E DD30092021"
1-2461,SP20MBP3-71,"TIMES OF COMPLETION (FINAL DATA IN KANLOG) GT FUEL GAS STRAINER SKID MBP",5121,"HK1003-Rev.0E-3",TT_FinMile,"55902",-,-,-,0,TK_NotStart,01/04/2022,,01/04/2022,,"SI20MB-3-72 FS,SP20MBP3A81 FS","SI20MB-3-72,SP20MBP3A81","SP20MBP4-11 FS","SP20MBP4-11",86,,86,,20,,20,,55,504,"HK1003 -Blackpoint D2 - Rev.0E DD30092021"
1-2462,SP20MBL4-10,"LOGISTICS AND CUSTOMS PREPARATION AIR INTAKE SYSTEM 20MBL",5121,"HK1003-Rev.0E-3",TT_Task,"55902",-,-,-,0,TK_NotStart,21/04/2022,,18/05/2022,,"SP20MBL3-70 FS","SP20MBL3-70","SP20MBL3B80 FS","SP20MBL3B80",89,,93,,20,,21,,58,184,"HK1003 -Blackpoint D2 - Rev.0E DD30092021"
1-2463,SP20MBL3-70,"TIMES OF COMPLETION (FINAL DATA IN KANLOG) AIR INTAKE SYSTEM 20MBL",5121,"HK1003-Rev.0E-3",TT_Mile,"55902",-,-,-,0,TK_NotStart,21/04/2022,,21/04/2022,,"SP20MBL3-25 FS","SP20MBL3-25","SP20MBL4-10 FS","SP20MBL4-10",89,,89,,20,,20,,58,184,"HK1003 -Blackpoint D2 - Rev.0E DD30092021"
1-2464,SP20MB-4A40,"(OTD-OS) ON SITE GT INTERCONNECTING PIPING 20MB-",5121,"HK1003-Rev.0E-3",TT_FinMile,"55902",-,-,-,0,TK_NotStart,23/07/2022,,23/07/2022,,"SI20MB-4A25 FS","SI20MB-4A25","SI20MBA8A10 FS,SI20MBA8-10 FS,SI20MBA8B10 FS,SI20MBX8-10 FS,SI20MBV8-10 FS,SI20MBA8D10 FS,SI20MBL8-10 FS,SI20MBP8-10 FS,SI20MBX8E10 FS,SI20MBH8-10 FS,SI20---6A15 FS,SI20MBA6F15 FS,SI20MB-4-40 FS","SI20MBA8A10,SI20MBA8-10,SI20MBA8B10,SI20MBX8-10,SI20MBV8-10,SI20MBA8D10,SI20MBL8-10,SI20MBP8-10,SI20MBX8E10,SI20MBH8-10,SI20---6A15,SI20MBA6F15,SI20MB-4-40",103,,103,,24,,24,,74,272,"HK1003 -Blackpoint D2 - Rev.0E DD30092021"
1-2465,SP20MBX4A40,"(OTD-OS) ON SITE INSTRUMENT AIR SKIDTANK  MBX",5121,"HK1003-Rev.0E-3",TT_FinMile,"55902",-,-,-,0,TK_NotStart,23/07/2022,,23/07/2022,,"SI20MBX4-25 FS,SI20MB-4-40 FS","SI20MBX4-25,SI20MB-4-40","SI20MBX4-12 FS","SI20MBX4-12",103,,103,,24,,24,,75,2064,"HK1003 -Blackpoint D2 - Rev.0E DD30092021"
1-2466,SI20MKW4-40,"(OTD-OS) ON SITE SEAL OIL SYSTEM 20MKW",5121,"HK1003-Rev.0E-3",TT_FinMile,"55902",-,-,-,0,TK_NotStart,23/07/2022,,23/07/2022,,"SI20MKW4-25 FS,SI20MKG4-40 FS","SI20MKW4-25,SI20MKG4-40","SI20MKW6-15 FS","SI20MKW6-15",103,,103,,24,,24,,75,904,"HK1003 -Blackpoint D2 - Rev.0E DD30092021"
1-2467,SI20MKW4-25,"TRANSPORT  SEAL OIL SYSTEM 20MKW",5121,"HK1003-Rev.0E-3",TT_Task,"55902",-,-,-,0,TK_NotStart,29/05/2022,,23/07/2022,,"SP20MKW3-80 FS","SP20MKW3-80","SI20MKW4-40 FS","SI20MKW4-40",95,,103,,22,,24,,67,904,"HK1003 -Blackpoint D2 - Rev.0E DD30092021"
1-2468,SP20MKW2-10,"PREPARE TEC RFQ DOC MK- AUXILIARIES SYSTEMS",5121,"HK1003-Rev.0E-3",TT_Task,"55902",-,-,-,100,TK_Complete,24/02/2021,24/02/2021,11/06/2021,11/06/2021,"SI--3331-35 FS,SP--MB-2-86 FS","SI--3331-35,SP--MB-2-86","SP20MKW2-80 FS","SP20MKW2-80",29,29,44,44,6,6,10,10,5,,"HK1003 -Blackpoint D2 - Rev.0E DD30092021"
1-2469,SP20MKW3-80,"(RFS) READY FOR SHIPMENT (NORTH SEA PORT) MK- AUXILIARIES SYSTEMS",5121,"HK1003-Rev.0E-3",TT_FinMile,"55902",-,-,-,0,TK_NotStart,29/04/2022,,29/04/2022,,"SP20MKW4-10 FS","SP20MKW4-10","SI20MKG4-25 FS,SI20MKQ4-25 FS,SI20MKW4-25 FS","SI20MKG4-25,SI20MKQ4-25,SI20MKW4-25",90,,90,,21,,21,,60,1136,"HK1003 -Blackpoint D2 - Rev.0E DD30092021"
1-2470,SP20MKW2-85,"CONTRACT INTO FORCE MK- AUXILIARIES SYSTEMS",5121,"HK1003-Rev.0E-3",TT_Mile,"55902",-,-,-,100,TK_Complete,30/07/2021,30/07/2021,30/07/2021,30/07/2021,"SP20MKW2-80 FS","SP20MKW2-80","SP20MKW3-89 FS,SP20MKW2-86 FS","SP20MKW3-89,SP20MKW2-86",51,51,51,51,12,12,12,12,23,,"HK1003 -Blackpoint D2 - Rev.0E DD30092021"
1-2471,SP20MKW2-80,"QUOTATION STAGE MK- AUXILIARIES SYSTEMS",5121,"HK1003-Rev.0E-3",TT_Task,"55902",-,-,-,100,TK_Complete,12/06/2021,12/06/2021,29/07/2021,29/07/2021,"SP20MKW2-10 FS","SP20MKW2-10","SP20MKW2-85 FS","SP20MKW2-85",45,45,51,51,10,10,12,12,17,,"HK1003 -Blackpoint D2 - Rev.0E DD30092021"
1-2472,SP20MKW3-89,"DESIGN / MANUFACTURING MK- AUXILIARIES SYSTEMS",5121,"HK1003-Rev.0E-3",TT_Task,"55902",-,-,-,25,TK_Active,30/07/2021,30/07/2021,01/04/2022,,"SP20MKW2-85 FS","SP20MKW2-85","SP20MKW3-70 FS,SP20MKW3-90 SS","SP20MKW3-70,SP20MKW3-90",51,51,86,,12,12,20,,23,352,"HK1003 -Blackpoint D2 - Rev.0E DD30092021"
1-2473,SI20MKQ4-40,"(OTD-OS) ON SITE  EXHAUST GAS SYSTEM FOR GENERATOR 20MKQ",5121,"HK1003-Rev.0E-3",TT_FinMile,"55902",-,-,-,0,TK_NotStart,23/07/2022,,23/07/2022,,"SI20MKQ4-25 FS,SI20MKA4-40 FS","SI20MKQ4-25,SI20MKA4-40","SI20MKQ6-15 FS,SI20MKG4-40 FS","SI20MKQ6-15,SI20MKG4-40",103,,103,,24,,24,,75,904,"HK1003 -Blackpoint D2 - Rev.0E DD30092021"
1-2474,SI20MKQ4-25,"TRANSPORT  EXHAUST GAS SYSTEM FOR GENERATOR 20MKQ",5121,"HK1003-Rev.0E-3",TT_Task,"55902",-,-,-,0,TK_NotStart,29/05/2022,,23/07/2022,,"SP20MKW3-80 FS","SP20MKW3-80","SI20MKQ4-40 FS","SI20MKQ4-40",95,,103,,22,,24,,67,904,"HK1003 -Blackpoint D2 - Rev.0E DD30092021"
1-2475,SI--HA-2-10,"TECHNICAL CLARIFICATION HRSG",5121,"HK1003-Rev.0E-3",TT_Task,"55902",-,-,-,100,TK_Complete,01/08/2020,01/08/2020,30/12/2020,30/12/2020,"SI--HA-2-81 SS","SI--HA-2-81","SI--HA-2-85 FS,SI20CJF2-15 FF,SI--HB-2D15 FF,SI--HA-3E26 FF,SI--HB-2-15 FF,SI--LBH2D15 FF,SI20HA-3C25 FS,SI20HA-3-15# FF,SI20HA-3-15# FS,SI20HA-3D25 FF,SI20HA-3D25 FS,SI20HA-3D26 FS","SI--HA-2-85,SI20CJF2-15,SI--HB-2D15,SI--HA-3E26,SI--HB-2-15,SI--LBH2D15,SI20HA-3C25,SI20HA-3-15#,SI20HA-3-15#,SI20HA-3D25,SI20HA-3D25,SI20HA-3D26",0,0,21,21,0,0,5,5,0,,"HK1003 -Blackpoint D2 - Rev.0E DD30092021"
1-2476,SI--HA-2-93,"PROJECT SPEC. EL.SPECS. (MOTORS,...)",5121,"HK1003-Rev.0E-3",TT_FinMile,"55902",-,-,-,100,TK_Complete,15/01/2021,15/01/2021,15/01/2021,15/01/2021,"SI--3331-35 FS,SI--HA-2-82 FS","SI--3331-35,SI--HA-2-82","SI--HA-2-85 SS","SI--HA-2-85",23,23,23,23,5,5,5,5,2,,"HK1003 -Blackpoint D2 - Rev.0E DD30092021"
1-2477,SI--HA-2-94,"FULL ENGINEERING RELEASE HRSG FOR BUILDING BLOCK ENGINEERING",5121,"HK1003-Rev.0E-3",TT_Mile,"55902",-,-,-,100,TK_Complete,13/11/2020,13/11/2020,13/11/2020,13/11/2020,"SI20---2M10 FS,SI--HA-2-94& FS","SI20---2M10,SI--HA-2-94&","SI-----2M10 FS","SI-----2M10",14,14,14,14,3,3,3,3,0,,"HK1003 -Blackpoint D2 - Rev.0E DD30092021"
1-2478,SI20SMG4-10,"LOGISTICS AND CUSTOMS PREPARATION OTHER CRANES AND HOIST",5121,"HK1003-Rev.0E-3",TT_Task,"55902",-,-,-,0,TK_NotStart,31/03/2022,,27/04/2022,,"SI20SMG3-70 FS","SI20SMG3-70","SI20SMG3-80 FS","SI20SMG3-80",86,,90,,20,,21,,54,2424,"HK1003 -Blackpoint D2 - Rev.0E DD30092021"
1-2479,SI20SMG3-70,"TIMES OF COMPLETION (FINAL DATA IN KANLOG) OTHER CRANES AND HOIST",5121,"HK1003-Rev.0E-3",TT_FinMile,"55902",-,-,-,0,TK_NotStart,30/03/2022,,30/03/2022,,"SI20SMG3-25 FS","SI20SMG3-25","SI20SMG4-10 FS","SI20SMG4-10",86,,86,,20,,20,,54,2424,"HK1003 -Blackpoint D2 - Rev.0E DD30092021"
1-2480,SI--SGA4A10,"LOGISTICS AND CUSTOMS PREPARATION FIRE FIGHTING RING MAIN SGA",5121,"HK1003-Rev.0E-3",TT_Task,"55902",-,-,-,0,TK_NotStart,01/03/2022,,28/03/2022,,"SI--SGA3A70 FS","SI--SGA3A70","SI--SGA3A80 FS","SI--SGA3A80",82,,86,,19,,20,,51,512,"HK1003 -Blackpoint D2 - Rev.0E DD30092021"
1-2481,SI--SGA3A70,"TIMES OF COMPLETION (FINAL DATA IN KANLOG) FIRE FIGHTING RING MAIN SGA",5121,"HK1003-Rev.0E-3",TT_FinMile,"55902",-,-,-,0,TK_NotStart,28/02/2022,,28/02/2022,,"SI--SGA3A25 FS","SI--SGA3A25","SI--SGA4A10 FS","SI--SGA4A10",82,,82,,19,,19,,51,512,"HK1003 -Blackpoint D2 - Rev.0E DD30092021"
1-2482,SI20SGY4A10,"LOGISTICS AND CUSTOMS PREPARATION FIRE FIGHTING DETECTION SYSTEM SGY",5121,"HK1003-Rev.0E-3",TT_Task,"55902",-,-,-,0,TK_NotStart,04/03/2022,,31/03/2022,,"SI20SGY3A70 FS","SI20SGY3A70","SI20SGY3A80 FS","SI20SGY3A80",82,,86,,19,,20,,52,1952,"HK1003 -Blackpoint D2 - Rev.0E DD30092021"
1-2483,SI20SGY3A70,"TIMES OF COMPLETION (FINAL DATA IN KANLOG) FIRE FIGHTING DETECTION SYSTEM SGY",5121,"HK1003-Rev.0E-3",TT_FinMile,"55902",-,-,-,0,TK_NotStart,03/03/2022,,03/03/2022,,"SI20SGY3A25 FS","SI20SGY3A25","SI20SGY4A10 FS","SI20SGY4A10",82,,82,,19,,19,,51,1952,"HK1003 -Blackpoint D2 - Rev.0E DD30092021"
1-2484,SI20SG-4-10,"LOGISTICS AND CUSTOMS PREPARATION FIRE FIGHTING SYSTEMS 20SGC/SGE/SGF/SGJ",5121,"HK1003-Rev.0E-3",TT_Task,"55902",-,-,-,0,TK_NotStart,25/02/2022,,24/03/2022,,"SI20SG-3-70 FS","SI20SG-3-70","SI--SG-2-05 FS,SI20SG-3-80 FS","SI--SG-2-05,SI20SG-3-80",81,,85,,19,,20,,51,1408,"HK1003 -Blackpoint D2 - Rev.0E DD30092021"
1-2485,SI20SG-3-70,"TIMES OF COMPLETION (FINAL DATA IN KANLOG) FIRE FIGHTING SYSTEMS 20SGC/SGE/SGF/SGJ",5121,"HK1003-Rev.0E-3",TT_FinMile,"55902",-,-,-,0,TK_NotStart,24/02/2022,,24/02/2022,,"SI20SG-3-25 FS","SI20SG-3-25","SI20SG-4-10 FS","SI20SG-4-10",81,,81,,19,,19,,50,1408,"HK1003 -Blackpoint D2 - Rev.0E DD30092021"
1-2486,SI--GM-3B70,"TIMES OF COMPLETION (FINAL DATA IN KANLOG) SUMP PUMP GM",5121,"HK1003-Rev.0E-3",TT_FinMile,"55902",-,-,-,0,TK_NotStart,02/04/2022,,02/04/2022,,"SI--GM-3B26 FS","SI--GM-3B26","SI--GM-4B10 FS","SI--GM-4B10",87,,87,,20,,20,,55,480,"HK1003 -Blackpoint D2 - Rev.0E DD30092021"
1-2487,SI--GM-4B10,"LOGISTICS AND CUSTOMS PREPARATION SUMP PUMP GM",5121,"HK1003-Rev.0E-3",TT_Task,"55902",-,-,-,0,TK_NotStart,03/04/2022,,30/04/2022,,"SI--GM-3B70 FS","SI--GM-3B70","SI--GM-3B80 FS","SI--GM-3B80",87,,91,,20,,21,,55,480,"HK1003 -Blackpoint D2 - Rev.0E DD30092021"
1-2488,SP20MBP2A81,"QUOTATION STAGE FUEL GAS STRAINER SKID MBP",5121,"HK1003-Rev.0E-3",TT_Task,"55902",-,-,-,100,TK_Complete,06/08/2021,06/08/2021,16/09/2021,16/09/2021,"SP20MBP2A80 FS,SP20MBP2A86 FS","SP20MBP2A80,SP20MBP2A86","SP20MBP2A85 FS","SP20MBP2A85",52,52,58,58,12,12,13,13,25,,"HK1003 -Blackpoint D2 - Rev.0E DD30092021"
1-2489,SP20MBP2A80,"ENGINEERING / PREPARE RFQ FUEL GAS STRAINER SKID MBP",5121,"HK1003-Rev.0E-3",TT_Task,"55902",-,-,-,100,TK_Complete,25/05/2021,25/05/2021,21/06/2021,21/06/2021,"SI-----1-04 SS,SP--MB-2-86 FS,SI--3331-35 FS","SI-----1-04,SP--MB-2-86,SI--3331-35","SP20MBP2A81 FS,SP20MBP2A86 FS","SP20MBP2A81,SP20MBP2A86",42,42,46,46,9,9,10,10,14,,"HK1003 -Blackpoint D2 - Rev.0E DD30092021"
1-2490,SP20MBP3A80,"(RFS) READY FOR SHIPMENT GT FUEL GAS STRAINER SKID MBP",5121,"HK1003-Rev.0E-3",TT_FinMile,"55902",-,-,-,0,TK_NotStart,29/04/2022,,29/04/2022,,"SP20MBP4-11 FS,SP20MBP3A81 FS","SP20MBP4-11,SP20MBP3A81","SI20MBP4-27 FS","SI20MBP4-27",90,,90,,21,,21,,60,504,"HK1003 -Blackpoint D2 - Rev.0E DD30092021"
1-2491,SP20MBP3A81,"DESIGN / MANUFACTURING GT FUEL GAS STRAINER SKID MBP",5121,"HK1003-Rev.0E-3",TT_Task,"55902",-,-,-,0,TK_NotStart,16/10/2021,,01/04/2022,,"SP20MBP2A85 FS,SP20MB-3-25 FF","SP20MBP2A85,SP20MB-3-25","SP20MBP3-71 FS,SP20MBP3A80 FS","SP20MBP3-71,SP20MBP3A80",63,,86,,14,,20,,34,504,"HK1003 -Blackpoint D2 - Rev.0E DD30092021"
1-2492,SI20MKA7-89,"GENERATOR READY FOR CURRENT TRANSFORMER",5121,"HK1003-Rev.0E-3",TT_Mile,"55902",-,-,-,0,TK_NotStart,20/08/2022,,20/08/2022,,"SI20MB-6-25 FS","SI20MB-6-25","SI20BAA7-05 FS,SI20BZK7C25 FS","SI20BAA7-05,SI20BZK7C25",107,,107,,24,,24,,78,1904,"HK1003 -Blackpoint D2 - Rev.0E DD30092021"
1-2493,SI20BZL7E18,"LIGHTING AND SMALL POWER INSTALLATION 20URA LAST 4 CELLS",5121,"HK1003-Rev.0E-3",TT_Task,"55902",-,-,-,0,TK_NotStart,13/04/2023,,03/05/2023,,"SI--BZL2-05 FS,SI20BZP7-145 FS,SI--BZL4-40 FS,SI20BZP7-155 FS","SI--BZL2-05,SI20BZP7-145,SI--BZL4-40,SI20BZP7-155","SI20BZL8E10 FS,SI20BZL7-16# FF,SI20BZL7-16# SS,SI20BZK7F29 FS","SI20BZL8E10,SI20BZL7-16#,SI20BZL7-16#,SI20BZK7F29",140,,143,,32,,33,,95,296,"HK1003 -Blackpoint D2 - Rev.0E DD30092021"
1-2494,SI20BZL7E17,"LIGHTING AND SMALL POWER INSTALLATION 20URA FIRST 4 CELLS",5121,"HK1003-Rev.0E-3",TT_Task,"55902",-,-,-,0,TK_NotStart,24/02/2023,,16/03/2023,,"SI--BZL2-05 FS,SI20BZP7-145 SS,SI--BZL4-40 FS","SI--BZL2-05,SI20BZP7-145,SI--BZL4-40","SI20BZL8E10 FS,SI--CYA7A15 SS,SI20BZL7-16# FF,SI20BZL7-16# SS,SI20BZK7F29 FS","SI20BZL8E10,SI--CYA7A15,SI20BZL7-16#,SI20BZL7-16#,SI20BZK7F29",133,,136,,31,,31,,91,400,"HK1003 -Blackpoint D2 - Rev.0E DD30092021"
1-2495,SI20BZL7E16,"LIGHTING AND SMALL POWER INSTALLATION 20URD",5121,"HK1003-Rev.0E-3",TT_Task,"55902",-,-,-,0,TK_NotStart,21/08/2022,,01/10/2022,,"SI--BZL2-05 FS,SI20URD5-46 FS,SI20URD5-45 FS,SI20PAC6B15 SS,SI--BZL4-40 FS","SI--BZL2-05,SI20URD5-46,SI20URD5-45,SI20PAC6B15,SI--BZL4-40","SI--CYA7A15 FS,SI20BZL8E10 FS,SI20BZL7-16# FF,SI20BZL7-16# SS,SI20BZK7F29 FS","SI--CYA7A15,SI20BZL8E10,SI20BZL7-16#,SI20BZL7-16#,SI20BZK7F29",107,,113,,25,,26,,78,1560,"HK1003 -Blackpoint D2 - Rev.0E DD30092021"
1-2496,SI--2226-57,"ERECTION KKS PLANT LABELLING (REQUIRED FOR REM. PLANT)",5121,"HK1003-Rev.0E-3",TT_Task,"55902",-,-,-,0,TK_NotStart,17/04/2023,,03/09/2023,,"SI--2223-54 FS,SI20UMY6M70 SS,SI--2226-56 SS,SI--2226-55 FS","SI--2223-54,SI20UMY6M70,SI--2226-56,SI--2226-55","SI--2226-58 FS","SI--2226-58",141,,161,,32,,37,,95,208,"HK1003 -Blackpoint D2 - Rev.0E DD30092021"
1-2497,SI--2226-56,"ERECTION KKS PLANT LABELLING (REQUIRED FOR 1ST FIRE)",5121,"HK1003-Rev.0E-3",TT_Task,"55902",-,-,-,0,TK_NotStart,25/01/2023,,13/06/2023,,"SI--2223-54 FS,SI20MA-6B84 SS,SI20MA-6D81 FS,SI--2226-55 SS","SI--2223-54,SI20MA-6B84,SI20MA-6D81,SI--2226-55","SI20MB-9-15 FS,SI--2226-58 FS,SI--2226-57 SS","SI20MB-9-15,SI--2226-58,SI--2226-57",129,,149,,30,,34,,89,80,"HK1003 -Blackpoint D2 - Rev.0E DD30092021"
1-2498,SP--MKA2-87,"GENERATOR DATA EXCHANGE LIST (+diverse curves)",5121,"HK1003-Rev.0E-3",TT_Mile,"55902",-,-,-,100,TK_Complete,14/02/2021,14/02/2021,14/02/2021,14/02/2021,"SP--MKA2-86 FS","SP--MKA2-86","SI20MKA3-85 FS","SI20MKA3-85",28,28,28,28,6,6,6,6,4,,"HK1003 -Blackpoint D2 - Rev.0E DD30092021"
1-2499,SI20HSJ6-17,"ERECTION AMMONIA STORAGE / SUPPLY SYTEM",5121,"HK1003-Rev.0E-3",TT_Task,"55902",-,-,-,0,TK_NotStart,17/06/2022,,30/06/2022,,"SI20UVM5-45 FS","SI20UVM5-45","SI20HSJ8-11 FS","SI20HSJ8-11",97,,99,,22,,23,,70,2864,"HK1003 -Blackpoint D2 - Rev.0E DD30092021"
1-2500,SI--L--2I46,"DESIGN DATA SHEETS SAFETY / CONTROL VALVES L SYSTEMS (off rack/Yard)",5121,"HK1003-Rev.0E-3",TT_Mile,"55902",-,-,-,100,TK_Complete,14/05/2021,14/05/2021,14/05/2021,14/05/2021,"SI--G--2I45 FS,SI20LCL2B87 FS,SI20LDK2B90 FS,SI--L--2-35 FS,SI--LCA2B20 FS,SI--LAC2B20 FS","SI--G--2I45,SI20LCL2B87,SI20LDK2B90,SI--L--2-35,SI--LCA2B20,SI--LAC2B20","SI--PM-2-60 FS","SI--PM-2-60",40,40,40,40,9,9,9,9,12,,"HK1003 -Blackpoint D2 - Rev.0E DD30092021"
1-2501,SI--L--2-65,"(DF) PROCESS FINAL / INPUT FOR M2 L-SYSTEMS",5121,"HK1003-Rev.0E-3",TT_FinMile,"55902",-,-,-,100,TK_Complete,04/05/2021,04/05/2021,04/05/2021,04/05/2021,"SI--L--2-77 FS,SI--L--2-75 FS","SI--L--2-77,SI--L--2-75","SI--C--2C55 FS,SI---1P2A10 FS,SI--L--2-29 FS,SI---2P2A10 FS,SI--L--2-70 FS,SI--L--2-28 SS","SI--C--2C55,SI---1P2A10,SI--L--2-29,SI---2P2A10,SI--L--2-70,SI--L--2-28",39,39,39,39,9,9,9,9,11,,"HK1003 -Blackpoint D2 - Rev.0E DD30092021"
1-2502,SI20MKG4-40,"(OTD-OS) ON SITE  GAS COOLING SUPPLY SYSTEM 20MKG",5121,"HK1003-Rev.0E-3",TT_FinMile,"55902",-,-,-,0,TK_NotStart,23/07/2022,,23/07/2022,,"SI20MKG4-25 FS,SI20MKQ4-40 FS","SI20MKG4-25,SI20MKQ4-40","SI20MKG6-15 FS,SI20MKW4-40 FS","SI20MKG6-15,SI20MKW4-40",103,,103,,24,,24,,75,904,"HK1003 -Blackpoint D2 - Rev.0E DD30092021"
1-2503,SI20MKG4-25,"TRANSPORT  GAS COOLING SUPPLY SYSTEM 20MKG",5121,"HK1003-Rev.0E-3",TT_Task,"55902",-,-,-,0,TK_NotStart,29/05/2022,,23/07/2022,,"SP20MKW3-80 FS","SP20MKW3-80","SI20MKG4-40 FS","SI20MKG4-40",95,,103,,22,,24,,67,904,"HK1003 -Blackpoint D2 - Rev.0E DD30092021"
1-2504,SI20MKG8-26,"(TOP-20MKG) GT GENERATOR GAS SUPPLY SYSTEM",5121,"HK1003-Rev.0E-3",TT_FinMile,"55902",-,-,-,0,TK_NotStart,25/04/2023,,25/04/2023,,"SI20MKG6-15 FS,SI20BZK7C25 FS,SI20MKG6A16 FS,SI20QJ-8B12 SS,SI20BZK7A25 FS,SI20BZK7F26 FS,SI20MBA8-23& FS","SI20MKG6-15,SI20BZK7C25,SI20MKG6A16,SI20QJ-8B12,SI20BZK7A25,SI20BZK7F26,SI20MBA8-23&","SI20MKA8-25 FS,SI20TPM7B8-30 FS,SI20TPM7A8-30 FS,SI20TPM8A8-30 FS","SI20MKA8-25,SI20TPM7B8-30,SI20TPM7A8-30,SI20TPM8A8-30",142,,142,,33,,33,,96,136,"HK1003 -Blackpoint D2 - Rev.0E DD30092021"
1-2505,SI20MKG6A16,"PIPING GAS COOLING SUPPLY SYSTEM 20MKG",5121,"HK1003-Rev.0E-3",TT_Task,"55902",-,-,-,0,TK_NotStart,07/10/2022,,22/12/2022,,"SI20MKG6-15 FS,SI20MKQ6A15 SS,SI---5P6A09 FS","SI20MKG6-15,SI20MKQ6A15,SI---5P6A09","SI20MKF8-11 FS,SI20MKG8-26 FS,SI20MKF6A16 SS,SI20TPM7A6-20 SS,SI20TPM7B6-20 SS,SI20TPM7A6-25 SS,SI20TPM7B6-25 SS","SI20MKF8-11,SI20MKG8-26,SI20MKF6A16,SI20TPM7A6-20,SI20TPM7B6-20,SI20TPM7A6-25,SI20TPM7B6-25",113,,124,,26,,29,,82,904,"HK1003 -Blackpoint D2 - Rev.0E DD30092021"
1-2506,SI20MKG6-15,"ERECTION GAS COOLING SUPPLY SYSTEM 20MKG",5121,"HK1003-Rev.0E-3",TT_Task,"55902",-,-,-,0,TK_NotStart,11/09/2022,,24/09/2022,,"SI20MKG4-40 FS,SI20MKQ6-15 FS","SI20MKG4-40,SI20MKQ6-15","SI20MKF8-11 FS,SI20MKG6A16 FS,SI20MKG8-26 FS,SI20MKF6-16 FS,SI20TPM7A6-25 FS,SI20TPM7B6-25 FS","SI20MKF8-11,SI20MKG6A16,SI20MKG8-26,SI20MKF6-16,SI20TPM7A6-25,SI20TPM7B6-25",110,,112,,25,,26,,81,1000,"HK1003 -Blackpoint D2 - Rev.0E DD30092021"
1-2507,SI20MKF8-11,"(TOP-20MKF) GENERATOR PRIMARY WATER COOLING SYSTEM",5121,"HK1003-Rev.0E-3",TT_FinMile,"55902",-,-,-,0,TK_NotStart,25/04/2023,,25/04/2023,,"SI20MKG6-15 FS,SI20MKG6A16 FS,SI20BZK7A25 FS,SI20BZK7C25 FS,SI20BZK7F26 FS,SI20MBA8-23& FS,SI20MKF6-16 FS,SI20MKF6A16 FS,SI20MKA7A15 FS","SI20MKG6-15,SI20MKG6A16,SI20BZK7A25,SI20BZK7C25,SI20BZK7F26,SI20MBA8-23&,SI20MKF6-16,SI20MKF6A16,SI20MKA7A15","SI20MKA8-25 FS","SI20MKA8-25",142,,142,,33,,33,,96,136,"HK1003 -Blackpoint D2 - Rev.0E DD30092021"
1-2508,SI20MBA4-10,"LOGISTICS AND CUSTOMS PREPARATION WASH WATER TANK 20MBA",5121,"HK1003-Rev.0E-3",TT_Task,"55902",-,-,-,0,TK_NotStart,02/04/2022,,29/04/2022,,"SI20MBA3-70 FS","SI20MBA3-70","SI20MBA3-80 FS","SI20MBA3-80",87,,90,,20,,21,,55,504,"HK1003 -Blackpoint D2 - Rev.0E DD30092021"
1-2509,SI20MBA3-70,"TIMES OF COMPLETION (FINAL DATA IN KANLOG) WASH WATER TANK 20MBA",5121,"HK1003-Rev.0E-3",TT_FinMile,"55902",-,-,-,0,TK_NotStart,01/04/2022,,01/04/2022,,"SP20MBK3-70 FS,SI20MBA3-84 FF","SP20MBK3-70,SI20MBA3-84","SI20MBA4-10 FS","SI20MBA4-10",86,,86,,20,,20,,55,504,"HK1003 -Blackpoint D2 - Rev.0E DD30092021"
1-2510,SI20MBA4-40,"(OTD-OS) ON SITE GT WASH WATER TANK 20MBA",5121,"HK1003-Rev.0E-3",TT_FinMile,"55902",-,-,-,0,TK_NotStart,23/07/2022,,23/07/2022,,"SI20MBA4-25 FS","SI20MBA4-25","SI20MBA6D15 FS,SI20MB-4-40 FS","SI20MBA6D15,SI20MB-4-40",103,,103,,24,,24,,75,272,"HK1003 -Blackpoint D2 - Rev.0E DD30092021"
1-2511,SI20MBA4-25,"TRANSPORT GT WASH WATER TANK 20MBA",5121,"HK1003-Rev.0E-3",TT_Task,"55902",-,-,-,0,TK_NotStart,30/04/2022,,24/06/2022,,"SI20MBA3-80 FS","SI20MBA3-80","SI20MBA4-40 FS","SI20MBA4-40",91,,98,,21,,23,,60,504,"HK1003 -Blackpoint D2 - Rev.0E DD30092021"
1-2512,SI20MBA3-80,"(RFS) READY FOR SHIPMENT WASH WATER TANK 20MBA",5121,"HK1003-Rev.0E-3",TT_FinMile,"55902",-,-,-,0,TK_NotStart,29/04/2022,,29/04/2022,,"SI20MBA4-10 FS","SI20MBA4-10","SI20MBA2D05 FS,SI20MBA4-25 FS","SI20MBA2D05,SI20MBA4-25",90,,90,,21,,21,,60,504,"HK1003 -Blackpoint D2 - Rev.0E DD30092021"
1-2513,SI20MBA3-84,"PROCURMENT / PRE-FABRICATION WASH WATER TANK 20MBA",5121,"HK1003-Rev.0E-3",TT_Task,"55902",-,-,-,0,TK_NotStart,09/10/2021,,01/04/2022,,"SI20MBA3-25 FS,SI20MBA2D85 FS,SP20MB-3-25 FF","SI20MBA3-25,SI20MBA2D85,SP20MB-3-25","SP20MB-3-251 FF,SI20MBA3-70 FF","SP20MB-3-251,SI20MBA3-70",62,,86,,14,,20,,32,504,"HK1003 -Blackpoint D2 - Rev.0E DD30092021"
1-2514,SI20MAW6-16,"MECHANICAL ERECTION SEAL/LEAK STEAM SYSTEM MAW",5121,"HK1003-Rev.0E-3",TT_Task,"55902",-,-,-,0,TK_NotStart,25/06/2022,,08/07/2022,,"SI--LOG2-50 FS,SI--PEM6-20& FS,SI--PM-2-90 FS,SI--2222-32 SS,SI--3335-65 SS,SI20UMC5C45 FS,SI20MAW4-40 FS,SI--2226-66 FS,SI20MAW6M11 FS","SI--LOG2-50,SI--PEM6-20&,SI--PM-2-90,SI--2222-32,SI--3335-65,SI20UMC5C45,SI20MAW4-40,SI--2226-66,SI20MAW6M11","SI20MAW6-40 FS,SI20UMC5E49 SS","SI20MAW6-40,SI20UMC5E49",99,,100,,23,,23,,71,664,"HK1003 -Blackpoint D2 - Rev.0E DD30092021"
1-2515,SI20UEN2-60,"(MS3) CONCRETE STRUCTURE FINAL DIMENSIONS, LOADS AVAILABLE 01UEN",5121,"HK1003-Rev.0E-3",TT_FinMile,"55902",-,-,-,100,TK_Complete,01/08/2021,01/08/2021,01/08/2021,01/08/2021,"SI--EK-2-89 FS","SI--EK-2-89","SI20UEN2-12 FS,SI20UEN2-90 FS,SI20UEN2-110 FS","SI20UEN2-12,SI20UEN2-90,SI20UEN2-110",52,52,52,52,12,12,12,12,24,,"HK1003 -Blackpoint D2 - Rev.0E DD30092021"
1-2516,SI20LCB4B10,"LOGISTICS AND CUSTOMS PREPARATION CONDENSATE EXTRACTION PUMP 20LCB",5121,"HK1003-Rev.0E-3",TT_Task,"55902",-,-,-,0,TK_NotStart,05/05/2022,,01/06/2022,,"SI20LCB3B70 FS","SI20LCB3B70","SI20LCB3B80 FS","SI20LCB3B80",91,,95,,21,,22,,63,344,"HK1003 -Blackpoint D2 - Rev.0E DD30092021"
1-2517,SI20LCB3B70,"TIMES OF COMPLETION (FINAL DATA IN KANLOG) CONDENSATE EXTRACTION PUMP 20LCB",5121,"HK1003-Rev.0E-3",TT_FinMile,"55902",-,-,-,0,TK_NotStart,05/05/2022,,05/05/2022,,"SI20LCB3B28 FS,SI20LCB2B05 FS","SI20LCB3B28,SI20LCB2B05","SI20LCB4B10 FS","SI20LCB4B10",91,,91,,21,,21,,63,344,"HK1003 -Blackpoint D2 - Rev.0E DD30092021"
1-2518,SI20BZK4-41,"(OTD-OS) ON SITE I&C CABLES 20/00BZK (LOT1)",5121,"HK1003-Rev.0E-3",TT_FinMile,"55902",-,-,-,0,TK_NotStart,11/08/2022,,11/08/2022,,"SI--CP-4-29 FS","SI--CP-4-29","SI20CFE7A25 FS,SI20BZK7B32 FS,SI20BZK7-28 FS,SI20BZK7F25 FS,SI20BZK7C33 FS,SI20BZK7L25 FS,SI20BZK7A25 FS,SI20BZK7C25 FS,SI20BZK7A27 FS,SI20BZK7E25 FS,SI20UBA7-104 FS,SI20BZK7B27 FS,SI20UBA7-25 FS,SI20BZK7B24 FS,SI20BZK7F26 FS,SI20BZK7D25 FS,SI20BZK7A26 FS,SI20BZK7B26 FS,SI20BZK7B28 FS,SI--BRU8-22 FS,SI20CR-8-10 FS,SI20UBA8-12 FS,SI--2226-55 FS,SI--2222-35 FS,SI20CPB8-25 FS,SI20MKA8-10 FS,SI20UMC5D50 FS,SI20BZK7B01 FS","SI20CFE7A25,SI20BZK7B32,SI20BZK7-28,SI20BZK7F25,SI20BZK7C33,SI20BZK7L25,SI20BZK7A25,SI20BZK7C25,SI20BZK7A27,SI20BZK7E25,SI20UBA7-104,SI20BZK7B27,SI20UBA7-25,SI20BZK7B24,SI20BZK7F26,SI20BZK7D25,SI20BZK7A26,SI20BZK7B26,SI20BZK7B28,SI--BRU8-22,SI20CR-8-10,SI20UBA8-12,SI--2226-55,SI--2222-35,SI20CPB8-25,SI20MKA8-10,SI20UMC5D50,SI20BZK7B01",105,,105,,24,,24,,77,464,"HK1003 -Blackpoint D2 - Rev.0E DD30092021"
1-2519,SI20UBA4-63,"DELIVERY OF ELECTRICAL MODULESs AND COMPONENTS FOR ASSEMBLY IN TEST FACILITY  20UBA7310/30",5121,"HK1003-Rev.0E-3",TT_FinMile,"55902",-,-,-,0,TK_NotStart,03/02/2022,,03/02/2022,,"SI20UBA4G60 FS,SP--CJJ2-37 FS","SI20UBA4G60,SP--CJJ2-37","SI20UBA3-90 FS","SI20UBA3-90",78,,78,,18,,18,,48,584,"HK1003 -Blackpoint D2 - Rev.0E DD30092021"
1-2520,SI20QJ-4B10,"LOGISTICS AND CUSTOMS PREPARATION - CENTRAL GAS SUPPLY (H2,CO2) QJ_",5121,"HK1003-Rev.0E-3",TT_Task,"55902",-,-,-,0,TK_NotStart,10/10/2021,,06/11/2021,,"SI20QJ-3B70 FS","SI20QJ-3B70","SI20QJ-3B80 FS","SI20QJ-3B80",62,,66,,14,,15,,32,3320,"HK1003 -Blackpoint D2 - Rev.0E DD30092021"
1-2521,SI20QJ-3B70,"TIMES OF COMPLETION (FINAL DATA IN KANLOG) - CENTRAL GAS SUPPLY (H2,CO2) QJ_",5121,"HK1003-Rev.0E-3",TT_FinMile,"55902",-,-,-,0,TK_NotStart,09/10/2021,,09/10/2021,,"SI20QJ-3B25 FS","SI20QJ-3B25","SI20QJ-4B10 FS","SI20QJ-4B10",62,,62,,14,,14,,32,3320,"HK1003 -Blackpoint D2 - Rev.0E DD30092021"
1-2522,SI20EK-4B10,"LOGISTICS AND CUSTOMS PREPARATION FUEL GAS RECEIVING AND MIXING SYSTEM 01EK",5121,"HK1003-Rev.0E-3",TT_Task,"55902",-,-,-,0,TK_NotStart,21/04/2022,,18/05/2022,,"SI20EK-3B70 FS","SI20EK-3B70","SI20EK-3-81 FS","SI20EK-3-81",89,,93,,20,,21,,58,600,"HK1003 -Blackpoint D2 - Rev.0E DD30092021"
1-2523,SI20EK-3B70,"TIMES OF COMPLETION (FINAL DATA IN KANLOG) FUEL GAS RECEIVING AND MIXING SYSTEM 01EK",5121,"HK1003-Rev.0E-3",TT_FinMile,"55902",-,-,-,0,TK_NotStart,20/04/2022,,20/04/2022,,"SI20EK-3-82 FS","SI20EK-3-82","SI20EK-4B10 FS","SI20EK-4B10",89,,89,,20,,20,,58,600,"HK1003 -Blackpoint D2 - Rev.0E DD30092021"
1-2524,SI20---4-17,"LOGISTICS AND CUSTOMS PREPARATION GT SPECIAL TOOLS 20MB-",5121,"HK1003-Rev.0E-3",TT_Task,"55902",-,-,-,0,TK_NotStart,02/04/2022,,29/04/2022,,"SI20---3-77 FS","SI20---3-77","SI20---3B88 FS","SI20---3B88",87,,90,,20,,21,,55,184,"HK1003 -Blackpoint D2 - Rev.0E DD30092021"
1-2525,SI20---3-77,"TIMES OF COMPLETION (FINAL DATA IN KANLOG) GT SPECIAL TOOLS 20MB-",5121,"HK1003-Rev.0E-3",TT_FinMile,"55902",-,-,-,0,TK_NotStart,01/04/2022,,01/04/2022,,"SP20MB-3C25 FS,SI20MB-3-70 FF,SP20MB-3C70 SS","SP20MB-3C25,SI20MB-3-70,SP20MB-3C70","SI20---4-17 FS","SI20---4-17",86,,86,,20,,20,,55,184,"HK1003 -Blackpoint D2 - Rev.0E DD30092021"
1-2526,SI20---4M12,"LOGISTICS AND CUSTOMS PREPARATION MODULES LOT 3",5121,"HK1003-Rev.0E-3",TT_Task,"55902",-,-,-,0,TK_NotStart,05/04/2022,,02/05/2022,,"SI20---3M72 FS","SI20---3M72","SI20---3M82 FS","SI20---3M82",87,,91,,20,,21,,56,952,"HK1003 -Blackpoint D2 - Rev.0E DD30092021"
1-2527,SI20---3M72,"TIMES OF COMPLETION (FINAL DATA IN KANLOG) FOR SHIPMENT LOT 3",5121,"HK1003-Rev.0E-3",TT_FinMile,"55902",-,-,-,0,TK_NotStart,05/04/2022,,05/04/2022,,"SI20---3G80& FS,SI20---3B52 FS","SI20---3G80&,SI20---3B52","SI20UPY3M70 FF,SI20---4M12 FS,SI20UEY3-110 FS","SI20UPY3M70,SI20---4M12,SI20UEY3-110",87,,87,,20,,20,,56,952,"HK1003 -Blackpoint D2 - Rev.0E DD30092021"
1-2528,SI20---4M11,"LOGISTICS AND CUSTOMS PREPARATION MODULES LOT 2",5121,"HK1003-Rev.0E-3",TT_Task,"55902",-,-,-,0,TK_NotStart,04/03/2022,,31/03/2022,,"SI20---3M71 FS,SI20---3B45 FF","SI20---3M71,SI20---3B45","SI20---3M81 FS","SI20---3M81",82,,86,,19,,20,,52,208,"HK1003 -Blackpoint D2 - Rev.0E DD30092021"
1-2529,SI20---3M71,"TIMES OF COMPLETION (FINAL DATA IN KANLOG) FOR SHIPMENT LOT 2",5121,"HK1003-Rev.0E-3",TT_FinMile,"55902",-,-,-,0,TK_NotStart,04/03/2022,,04/03/2022,,"SI20---3-71 FS,SI20---3B45 FS,SI20---3M117 FS","SI20---3-71,SI20---3B45,SI20---3M117","SI20UMC3M71 FS,SI20---4M11 FS,SI20UMC3M70 FS,SI20LAC3M70 FS,SI20LCA3M71 FS,SI20PGB3M70 FS,SI20PGB3M71 FS,SI20PCB3M70 FS","SI20UMC3M71,SI20---4M11,SI20UMC3M70,SI20LAC3M70,SI20LCA3M71,SI20PGB3M70,SI20PGB3M71,SI20PCB3M70",82,,82,,19,,19,,52,208,"HK1003 -Blackpoint D2 - Rev.0E DD30092021"
1-2530,SI20---4M10,"LOGISTICS AND CUSTOMS PREPARATION MODULES LOT 1",5121,"HK1003-Rev.0E-3",TT_Task,"55902",-,-,-,0,TK_NotStart,03/02/2022,,02/03/2022,,"SI20---3M70 FS,SI20---3B37 FF","SI20---3M70,SI20---3B37","SI20---3M80 FS","SI20---3M80",78,,82,,18,,19,,48,240,"HK1003 -Blackpoint D2 - Rev.0E DD30092021"
1-2531,SI20---3M70,"TIMES OF COMPLETION (FINAL DATA IN KANLOG) FOR SHIPMENT LOT 1",5121,"HK1003-Rev.0E-3",TT_FinMile,"55902",-,-,-,0,TK_NotStart,03/02/2022,,03/02/2022,,"SI20---3B37 FS","SI20---3B37","SI20UMC3M70 FF,SI20MAG3M70 FF,SI20MAL3M70 FF,SI20MAW3M70 FF,SI20MAW3M71 FF,SI20UMY3M70 FF,SI20---4M10 FS,SI20ULY3M70 FS,SI20LDK3M70 FF","SI20UMC3M70,SI20MAG3M70,SI20MAL3M70,SI20MAW3M70,SI20MAW3M71,SI20UMY3M70,SI20---4M10,SI20ULY3M70,SI20LDK3M70",78,,78,,18,,18,,48,240,"HK1003 -Blackpoint D2 - Rev.0E DD30092021"
1-2532,SI20PAC4B10,"LOGISTICS AND CUSTOMS PREPARATION CIRC. CW PUMP 20PAC",5121,"HK1003-Rev.0E-3",TT_Task,"55902",-,-,-,0,TK_NotStart,03/04/2022,,30/04/2022,,"SI20PAC3B70 FS","SI20PAC3B70","SI20PAC4B25 FS,SI20PAC3B80 FS","SI20PAC4B25,SI20PAC3B80",87,,91,,20,,21,,55,384,"HK1003 -Blackpoint D2 - Rev.0E DD30092021"
1-2533,SI20PAC3B70,"TIMES OF COMPLETION (FINAL DATA IN KANLOG) CIRC. CW PUMP 20PAC",5121,"HK1003-Rev.0E-3",TT_FinMile,"55902",-,-,-,0,TK_NotStart,02/04/2022,,02/04/2022,,"SI--PAC3B26 FS","SI--PAC3B26","SI20PAC4B10 FS","SI20PAC4B10",87,,87,,20,,20,,55,384,"HK1003 -Blackpoint D2 - Rev.0E DD30092021"
1-2534,SI20PAA4B10,"LOGISTICS AND CUSTOMS PREPARATION COOLING TOWER COARSE SCREEN 20PAA",5121,"HK1003-Rev.0E-3",TT_Task,"55902",-,-,-,0,TK_NotStart,01/06/2022,,28/06/2022,,"SI20PAA3B70 FS","SI20PAA3B70","SI20PAA3-80 FS","SI20PAA3-80",95,,99,,22,,23,,67,1536,"HK1003 -Blackpoint D2 - Rev.0E DD30092021"
1-2535,SI20PAA3B70,"TIMES OF COMPLETION (FINAL DATA IN KANLOG) COOLING TOWER COARSE SCREEN 20PAA",5121,"HK1003-Rev.0E-3",TT_FinMile,"55902",-,-,-,0,TK_NotStart,31/05/2022,,31/05/2022,,"SI20PAA3-25 FS","SI20PAA3-25","SI20PAA4B10 FS","SI20PAA4B10",95,,95,,22,,22,,67,1536,"HK1003 -Blackpoint D2 - Rev.0E DD30092021"
1-2536,SI20---3G71&,"START OF STEELWORK PREFABRICATION SHIPMENT LOT 1",5121,"HK1003-Rev.0E-3",TT_FinMile,"55902",-,-,-,100,TK_Complete,07/09/2021,07/09/2021,07/09/2021,07/09/2021,"SI20---3G25 FS","SI20---3G25","SI20-1P340 FS","SI20-1P340",57,57,57,57,13,13,13,13,28,,"HK1003 -Blackpoint D2 - Rev.0E DD30092021"
1-2537,SI20PAD4B10,"LOGISTICS AND CUSTOMS PREPARATION -  (EU) 20PAD FILL BATCH 1",5121,"HK1003-Rev.0E-3",TT_Task,"55902",-,-,-,0,TK_NotStart,27/05/2022,,23/06/2022,,"SI20PAD3B70 FS","SI20PAD3B70","SI20PAD3-80 FS","SI20PAD3-80",94,,98,,22,,23,,66,64,"HK1003 -Blackpoint D2 - Rev.0E DD30092021"
1-2538,SI--PAD4B10,"LOGISTICS AND CUSTOMS PREPARATION -  PARTS EMB. INTO RISERES 20PAD",5121,"HK1003-Rev.0E-3",TT_Task,"55902",-,-,-,100,TK_Complete,13/07/2021,13/07/2021,09/08/2021,09/08/2021,"SI--PAD3B70 FS","SI--PAD3B70","SI--PAD3-80 FS","SI--PAD3-80",49,49,53,53,11,11,12,12,21,,"HK1003 -Blackpoint D2 - Rev.0E DD30092021"
1-2539,SI--PAD3B70,"TIMES OF COMPLETION (FINAL DATA IN KANLOG) -  PARTS EMB. INTO RISERES 20PAD",5121,"HK1003-Rev.0E-3",TT_FinMile,"55902",-,-,-,100,TK_Complete,12/07/2021,12/07/2021,12/07/2021,12/07/2021,"SI20PAD3-24 FF","SI20PAD3-24","SI--PAD4B10 FS","SI--PAD4B10",49,49,49,49,11,11,11,11,21,,"HK1003 -Blackpoint D2 - Rev.0E DD30092021"
1-2540,SI20PAD3B70,"TIMES OF COMPLETION (FINAL DATA IN KANLOG) - (EU)   20PAD FILL BATCH 1",5121,"HK1003-Rev.0E-3",TT_FinMile,"55902",-,-,-,0,TK_NotStart,27/05/2022,,27/05/2022,,"SI20PAD3-81 FS","SI20PAD3-81","SI20PAD4B10 FS","SI20PAD4B10",94,,94,,22,,22,,66,64,"HK1003 -Blackpoint D2 - Rev.0E DD30092021"
1-2541,SI20UBA4B13,"LOGISTICS AND CUSTOMS PREPARATION ELECTRICAL MODULES 20UBA8110/20",5121,"HK1003-Rev.0E-3",TT_Task,"55902",-,-,-,0,TK_NotStart,26/08/2022,,22/09/2022,,"SI20UBA3B73 FS","SI20UBA3B73","SI20UBA3K80 FS,SI20UBA3K20# FF","SI20UBA3K80,SI20UBA3K20#",107,,111,,25,,26,,79,80,"HK1003 -Blackpoint D2 - Rev.0E DD30092021"
1-2542,SI20UBA3B73,"TIMES OF COMPLETION (FINAL DATA IN KANLOG) ELECTRICAL MODULES 20UBA8110/20",5121,"HK1003-Rev.0E-3",TT_FinMile,"55902",-,-,-,0,TK_NotStart,26/08/2022,,26/08/2022,,"SI20UBA3K55 FS","SI20UBA3K55","SI20UBA4B13 FS","SI20UBA4B13",107,,107,,25,,25,,79,80,"HK1003 -Blackpoint D2 - Rev.0E DD30092021"
1-2543,SI--ZTB4B10,"LOGISTICS AND CUSTOMS PREPARATION - PIPING / VALVES FOR STEAM BLOWING SYSTEM ZTB",5121,"HK1003-Rev.0E-3",TT_Task,"55902",-,-,-,0,TK_NotStart,10/12/2022,,06/01/2023,,"SI--ZTB3B70 FS","SI--ZTB3B70","SI--ZTB3B80 FS","SI--ZTB3B80",123,,126,,28,,29,,86,0,"HK1003 -Blackpoint D2 - Rev.0E DD30092021"
1-2544,SI--ZTB3B70,"TIMES OF COMPLETION (FINAL DATA IN KANLOG) - PIPING / VALVES FOR STEAM BLOWING SYSTEM ZTB",5121,"HK1003-Rev.0E-3",TT_FinMile,"55902",-,-,-,0,TK_NotStart,09/12/2022,,09/12/2022,,"SI--ZTB3A25 FS","SI--ZTB3A25","SI--ZTB4B10 FS","SI--ZTB4B10",122,,122,,28,,28,,86,0,"HK1003 -Blackpoint D2 - Rev.0E DD30092021"
1-2545,SI--ZTA4B10,"LOGISTICS AND CUSTOMS PREPARATION - TEMP. PIPING / VALVES FOR CHEMICAL CLEANING SYSTEM ZTA",5121,"HK1003-Rev.0E-3",TT_Task,"55902",-,-,-,0,TK_NotStart,13/12/2022,,09/01/2023,,"SI--ZTA3B70 FS","SI--ZTA3B70","SI--ZTA3B80 FS","SI--ZTA3B80",123,,127,,28,,29,,87,88,"HK1003 -Blackpoint D2 - Rev.0E DD30092021"
1-2546,SI--ZTA3B70,"TIMES OF COMPLETION (FINAL DATA IN KANLOG) - TEMP. PIPING / VALVES FOR CHEMICAL CLEANING SYSTEM ZTA",5121,"HK1003-Rev.0E-3",TT_FinMile,"55902",-,-,-,0,TK_NotStart,12/12/2022,,12/12/2022,,"SI--ZTA3A25 FS","SI--ZTA3A25","SI--ZTA4B10 FS","SI--ZTA4B10",123,,123,,28,,28,,87,88,"HK1003 -Blackpoint D2 - Rev.0E DD30092021"
1-2547,SI20BZK4-10,"LOGISTICS AND CUSTOMS PREPARATION MV/LV CABLES20/00BZK (LOT 1)",5121,"HK1003-Rev.0E-3",TT_Task,"55902",-,-,-,0,TK_NotStart,20/04/2022,,17/05/2022,,"SI20BZK3-70 FS","SI20BZK3-70","SI20BZK3-80 FS","SI20BZK3-80",89,,93,,20,,21,,58,472,"HK1003 -Blackpoint D2 - Rev.0E DD30092021"
1-2548,SI20BZK3-70,"TIMES OF COMPLETION (FINAL DATA IN KANLOG) MV/LV CABLES20/00BZK (LOT 1)",5121,"HK1003-Rev.0E-3",TT_FinMile,"55902",-,-,-,0,TK_NotStart,19/04/2022,,19/04/2022,,"SI20BZK3-25 FS","SI20BZK3-25","SI20BZK4-10 FS","SI20BZK4-10",89,,89,,20,,20,,58,472,"HK1003 -Blackpoint D2 - Rev.0E DD30092021"
1-2549,SI--ZTA3-80,"(RFS) READY FOR SHIPMENT CHEMICAL CLEANING",5121,"HK1003-Rev.0E-3",TT_FinMile,"55902",-,-,-,0,TK_NotStart,06/01/2023,,06/01/2023,,"SI--ZTA4B11 FS","SI--ZTA4B11","SI--ZTA4-25 FS","SI--ZTA4-25",126,,126,,29,,29,,88,0,"HK1003 -Blackpoint D2 - Rev.0E DD30092021"
1-2550,SI--ZTA4B11,"LOGISTICS AND CUSTOMS PREPARATION - CHEMICAL CLEANING",5121,"HK1003-Rev.0E-3",TT_Task,"55902",-,-,-,0,TK_NotStart,10/12/2022,,06/01/2023,,"SI--ZTA3B71 FS","SI--ZTA3B71","SI--ZTA3-80 FS","SI--ZTA3-80",123,,126,,28,,29,,86,0,"HK1003 -Blackpoint D2 - Rev.0E DD30092021"
1-2551,SI--ZTA3B71,"TIMES OF COMPLETION (FINAL DATA IN KANLOG) - CHEMICAL CLEANING",5121,"HK1003-Rev.0E-3",TT_FinMile,"55902",-,-,-,0,TK_NotStart,11/11/2022,,11/11/2022,,"SI--ZTA3-25 FS","SI--ZTA3-25","SI--ZTA4B11 FS","SI--ZTA4B11",118,,118,,27,,27,,85,224,"HK1003 -Blackpoint D2 - Rev.0E DD30092021"
1-2552,SI20MBL6-26,"PREFABRICATION BEFORE ERECTION FILTERHOUSE 20MBL",5121,"HK1003-Rev.0E-3",TT_Task,"55902",-,-,-,0,TK_NotStart,09/08/2022,,29/08/2022,,"SI20MBL4-25 FS,SI20MBL6-06 FS","SI20MBL4-25,SI20MBL6-06","SI20MBL6-20 FS","SI20MBL6-20",105,,108,,24,,25,,77,376,"HK1003 -Blackpoint D2 - Rev.0E DD30092021"
1-2553,SI20URA5-05,"WORK PREPARATION, EXCAVATION 20URA",5121,"HK1003-Rev.0E-3",TT_Task,"55902",-,-,-,96,TK_Active,03/09/2021,03/09/2021,30/09/2021,,"SI-----5-22 FS,SI-----5-21& FS,SI-----5-20 FS,SI--2222-104 FS,SI-P222-84 FS,SI--URA2-103 FS,SI20PUR2J93 FF","SI-----5-22,SI-----5-21&,SI-----5-20,SI--2222-104,SI-P222-84,SI--URA2-103,SI20PUR2J93","SI20URA5-10 FS,SI20URA5-15# SS,SI-P222-131# FF,SI-P222-131# SS,SI20URA5-06 SS,SI20URA5-17.01 SS","SI20URA5-10,SI20URA5-15#,SI-P222-131#,SI-P222-131#,SI20URA5-06,SI20URA5-17.01",56,56,60,,13,13,14,,28,1352,"HK1003 -Blackpoint D2 - Rev.0E DD30092021"
1-2554,SI-----1-09,"(PAC) PROVISIONAL ACCEPTANCE CERTIFICATE - READY FOR COMMERCIAL OPERATION",5121,"HK1003-Rev.0E-3",TT_FinMile,"55902",-,-,-,0,TK_NotStart,31/12/2023,,31/12/2023,,"SI--2222-30 FS,SI--2222-26 FS,SI20UMC5D45 FS,SI20UZA5-23 FS,SI20M--9-85 FS,SI20BZL7-15 FS,SI--2222-31 FS,SI20BAW5C22 FS,SI-P222-144 FS,SI-P222-143 FS,SI-P222-142 FS,SP20MBL2-100& FS,SI-P221-572& FS,SI-P221-570& FS,SI-P221-573& FS,SI-P221-571& FS,SI-P221-575& FS,SI-P221-576& FS,SI-P221-578& FS,SI-P221-568& FS,SI-P222-64 FS,SI-P222-79 FS,SI-P222-82 FS,SI-P222-85 FS,SI-P222-89 FS,SI-P222-91 FS,SI-P222-92 FS,SI-P222-94 FS,SI-P222-95 FS,SI-P222-96 FS,SI-P222-97 FS,SI-P222-98 FS,SI-P222-99 FS,SI-P222-100 FS,SI-P222-102 FS,SI-P222-103 FS,SI-P222-105 FS,SI-P222-113 FS,SI-P222-121 FS,SI-P222-125 FS,SI-P222-117 FS,SI-P222-123 FS,SI-P222-107 FS,SI-P222-119 FS,SI-P222-128 FS,SI-P222-135 FS,SI-P222-136 FS,SI-P222-140 FS,SI-P222-141 FS,CL20TPE7A7-27 FS,CL20TPE8A7-26 FS,SI20SD-122& FS,SI20SD-121& FS,SI20UGX8-45 FS,SI-P222-152 FS,SI-P222-65 SS,SI-P222-150 FS,SI20--2-15& FS,SI20--2-20& FS,SI20--2-25& FS,SI20--2-30& FS,SI20--2-35& FS,SI20--2-40& FS,SI20--2-45& FS","SI--2222-30,SI--2222-26,SI20UMC5D45,SI20UZA5-23,SI20M--9-85,SI20BZL7-15,SI--2222-31,SI20BAW5C22,SI-P222-144,SI-P222-143,SI-P222-142,SP20MBL2-100&,SI-P221-572&,SI-P221-570&,SI-P221-573&,SI-P221-571&,SI-P221-575&,SI-P221-576&,SI-P221-578&,SI-P221-568&,SI-P222-64,SI-P222-79,SI-P222-82,SI-P222-85,SI-P222-89,SI-P222-91,SI-P222-92,SI-P222-94,SI-P222-95,SI-P222-96,SI-P222-97,SI-P222-98,SI-P222-99,SI-P222-100,SI-P222-102,SI-P222-103,SI-P222-105,SI-P222-113,SI-P222-121,SI-P222-125,SI-P222-117,SI-P222-123,SI-P222-107,SI-P222-119,SI-P222-128,SI-P222-135,SI-P222-136,SI-P222-140,SI-P222-141,CL20TPE7A7-27,CL20TPE8A7-26,SI20SD-122&,SI20SD-121&,SI20UGX8-45,SI-P222-152,SI-P222-65,SI-P222-150,SI20--2-15&,SI20--2-20&,SI20--2-25&,SI20--2-30&,SI20--2-35&,SI20--2-40&,SI20--2-45&","SI-PM-55 FS,SI-PM-50 FS,SI20BB-9-10# FF,SI20BB-9-25# FF","SI-PM-55,SI-PM-50,SI20BB-9-10#,SI20BB-9-25#",178,,178,,41,,41,,99,0,"HK1003 -Blackpoint D2 - Rev.0E DD30092021"
1-2555,SP20MAN3-26,"DESIGN / MANUFACTURING ST BYPASS MODULE 20MAN",5121,"HK1003-Rev.0E-3",TT_Task,"55902",-,-,-,22,TK_Active,03/08/2021,03/08/2021,28/04/2022,,"SP20MAN2-85 FS,SP20MA-2-81 SS,SI-----1-04 SS,SP20MA-3-25 SS","SP20MAN2-85,SP20MA-2-81,SI-----1-04,SP20MA-3-25","SP20MAN3-70 FS","SP20MAN3-70",52,52,90,,12,12,21,,24,192,"HK1003 -Blackpoint D2 - Rev.0E DD30092021"
1-2556,SP--B--2-59,"CMI's AVAILABLE FOR I&C",5121,"HK1003-Rev.0E-3",TT_Mile,"55902",-,-,-,100,TK_Complete,30/06/2021,30/06/2021,30/06/2021,30/06/2021,"SI--3332-27 FS,SI--3332-24 FS","SI--3332-27,SI--3332-24","SP--B--2-14 FS,SI20CJ-2-50 FS,SP--B--2-60 FS","SP--B--2-14,SI20CJ-2-50,SP--B--2-60",47,47,47,47,11,11,11,11,19,,"HK1003 -Blackpoint D2 - Rev.0E DD30092021"
1-2557,SI20PAS6B15,"ERECTION CT MAKE-UP WATER PUMP PAS",5121,"HK1003-Rev.0E-3",TT_Task,"55902",-,-,-,0,TK_NotStart,02/03/2022,,12/04/2022,,"SI20PAS4B40 FS,SI20UQZ5-161 FS,SI-----5-23 FS","SI20PAS4B40,SI20UQZ5-161,SI-----5-23","SI20BZP7-145 FF,SI20BAW5C22 FS,SI20PAS6B16 SS,SI20PA6-1# SS,SI20PA6-1# FF,SI20PAA2-75 SS","SI20BZP7-145,SI20BAW5C22,SI20PAS6B16,SI20PA6-1#,SI20PA6-1#,SI20PAA2-75",82,,88,,19,,20,,51,2480,"HK1003 -Blackpoint D2 - Rev.0E DD30092021"
1-2558,SI20PAC6-06,"ELECTRICAL ERECTION PAC/PSB-PUMPS",5121,"HK1003-Rev.0E-3",TT_Task,"55902",-,-,-,0,TK_NotStart,17/11/2022,,14/12/2022,,"SI20BZP7-95 FF,SI20UBA7-16 FF,SI20PAC6B15 FS","SI20BZP7-95,SI20UBA7-16,SI20PAC6B15","SI20PAB8-05 FS,SI20BAW5C22 FS,SI20PAA8-20 FS,SI20BZK7D11# FF,SI20BZK7D11# SS","SI20PAB8-05,SI20BAW5C22,SI20PAA8-20,SI20BZK7D11#,SI20BZK7D11#",119,,123,,27,,28,,85,1024,"HK1003 -Blackpoint D2 - Rev.0E DD30092021"
1-2559,SI20MAG6-60,"ELECTRICAL ERECTION CONDENSER MAG20",5121,"HK1003-Rev.0E-3",TT_Task,"55902",-,-,-,0,TK_NotStart,12/10/2022,,08/11/2022,,"SI20BZP7-110 SS,SI20BZK7C33 SS","SI20BZP7-110,SI20BZK7C33","SI20MAG8-10 FS,SI20BZK7D11# FF,SI20BZK7D11# SS","SI20MAG8-10,SI20BZK7D11#,SI20BZK7D11#",114,,118,,26,,27,,83,1256,"HK1003 -Blackpoint D2 - Rev.0E DD30092021"
1-2560,SP20MBX2A85,"CONTRACT INTO FORCE INSTRUMENT AIR SKID TANK  MBX",5121,"HK1003-Rev.0E-3",TT_Mile,"55902",-,-,-,0,TK_NotStart,27/11/2021,,27/11/2021,,"SP20MBX2A81 FS","SP20MBX2A81","SP20MBX3A83 FS","SP20MBX3A83",69,,69,,16,,16,,39,2520,"HK1003 -Blackpoint D2 - Rev.0E DD30092021"
1-2561,SP20MBX2A81,"QUOTATION STAGE INSTRUMENT AIR SKID TANK  MBX",5121,"HK1003-Rev.0E-3",TT_Task,"55902",-,-,-,0,TK_NotStart,23/10/2021,,26/11/2021,,"SP20MBX2A80 FS","SP20MBX2A80","SP20MBX2A85 FS","SP20MBX2A85",64,,68,,14,,16,,36,2520,"HK1003 -Blackpoint D2 - Rev.0E DD30092021"
1-2562,SP20MBX2A80,"PREPARE TEC RFQ DOC INSTRUMENT AIR SKID TANK MBX",5121,"HK1003-Rev.0E-3",TT_Task,"55902",-,-,-,18,TK_Active,25/09/2021,25/09/2021,22/10/2021,,"SI-----1-04 SS,SP--MB-2-86 FS,SI--3331-35 FS","SI-----1-04,SP--MB-2-86,SI--3331-35","SP20MBX2A81 FS","SP20MBX2A81",60,60,63,,14,14,14,,30,2520,"HK1003 -Blackpoint D2 - Rev.0E DD30092021"
1-2563,SP20MBX3A80,"(RFS) READY FOR SHIPMENT INSTRUMENT AIR SKID TANK MBX",5121,"HK1003-Rev.0E-3",TT_FinMile,"55902",-,-,-,0,TK_NotStart,29/04/2022,,29/04/2022,,"SP20MBX4-10 FS","SP20MBX4-10","SI20MBX4-25 FS","SI20MBX4-25",90,,90,,21,,21,,60,2296,"HK1003 -Blackpoint D2 - Rev.0E DD30092021"
1-2564,SP20MBX3A83,"DESIGN / MANUFACTURING INSTRUMENT AIR SKID TANK  MBX",5121,"HK1003-Rev.0E-3",TT_Task,"55902",-,-,-,0,TK_NotStart,27/11/2021,,01/04/2022,,"SP20MBX2A85 FS,SP20MB-3-25 FF","SP20MBX2A85,SP20MB-3-25","SP20MBX3-70 FS","SP20MBX3-70",69,,86,,16,,20,,39,2520,"HK1003 -Blackpoint D2 - Rev.0E DD30092021"
1-2565,SP20MBP2A85,"CONTRACT INTO FORCE FUEL GAS STRAINER SKID MBP",5121,"HK1003-Rev.0E-3",TT_Mile,"55902",-,-,-,100,TK_Complete,17/09/2021,17/09/2021,17/09/2021,17/09/2021,"SP20MBP2A81 FS","SP20MBP2A81","SP20MBP3A81 FS","SP20MBP3A81",58,58,58,58,13,13,13,13,29,,"HK1003 -Blackpoint D2 - Rev.0E DD30092021"
1-2566,SI20BZK7B27,"CABLING WORKS 20UBA (10x) to 20UMX02/01UEN",5121,"HK1003-Rev.0E-3",TT_Task,"55902",-,-,-,0,TK_NotStart,20/12/2022,,16/01/2023,,"SI20BZK7-25 FS,SI20BZK4-41 FS,SI--B--7-55 FS,SI--B--2-68 SS,SI20UBA7-25 FS,SI20BZP7-50 FS,SI20BZP7-5 FS,SI20EK-7-15 FS,SI20BZK7-25 SS,SI--B--2-93 FS,SI20BZP7-196 FS,SI20BZP7-174 FS,SI--BZK4-40 FS","SI20BZK7-25,SI20BZK4-41,SI--B--7-55,SI--B--2-68,SI20UBA7-25,SI20BZP7-50,SI20BZP7-5,SI20EK-7-15,SI20BZK7-25,SI--B--2-93,SI20BZP7-196,SI20BZP7-174,SI--BZK4-40","SI20GHC8H25 FS,SI20EK-8-10 FS,SI--2226-55 FS,SI--2222-35 FS,SI20BFA8-10 FS,SI20BZK7D10# FF,SI20BZK7D10# SS","SI20GHC8H25,SI20EK-8-10,SI--2226-55,SI--2222-35,SI20BFA8-10,SI20BZK7D10#,SI20BZK7D10#",124,,128,,29,,29,,87,144,"HK1003 -Blackpoint D2 - Rev.0E DD30092021"
1-2567,SI20PAS2A80,"QUOTATION STAGE, BASIC DESIGN CT MAKE-UP WATER PUMP PAS",5121,"HK1003-Rev.0E-3",TT_Task,"55902",-,-,-,100,TK_Complete,18/03/2021,18/03/2021,12/05/2021,12/05/2021,"SI20PAS2A91 FS","SI20PAS2A91","SI20PAS2A85 FS","SI20PAS2A85",32,32,40,40,7,7,9,9,6,,"HK1003 -Blackpoint D2 - Rev.0E DD30092021"
1-2568,SI20PAS2A85,"CONTRACT INTO FORCE CT MAKE-UP WATER PUMP PAS",5121,"HK1003-Rev.0E-3",TT_Mile,"55902",-,-,-,100,TK_Complete,15/06/2021,15/06/2021,15/06/2021,15/06/2021,"SI20PAS2A80 FS","SI20PAS2A80","SI20PAS3B25 FS,SI20PAS2B65 SS,SI20PAS2B10 SS,SI20PAS2A92 FS,SI20PCC2A95 FS,SI20BR2-41 FS","SI20PAS3B25,SI20PAS2B65,SI20PAS2B10,SI20PAS2A92,SI20PCC2A95,SI20BR2-41",45,45,45,45,10,10,10,10,17,,"HK1003 -Blackpoint D2 - Rev.0E DD30092021"
1-2569,SI20PAS2A91,"PREPARATION RFQ CT MAKE-UP WATER PUMP PAS",5121,"HK1003-Rev.0E-3",TT_Task,"55902",-,-,-,100,TK_Complete,05/02/2021,05/02/2021,18/03/2021,18/03/2021,"SI--3331-32 SS,SI--P--2-05 FF,SI--3332-76 FS,SI-----1-05 FS","SI--3331-32,SI--P--2-05,SI--3332-76,SI-----1-05","SI20PAS2A80 FS,SI20PCC2A93 SS","SI20PAS2A80,SI20PCC2A93",26,26,32,32,6,6,7,7,4,,"HK1003 -Blackpoint D2 - Rev.0E DD30092021"
1-2570,SI20MB-6-57,"INSULATION / COMPLETE ERECTION GT20 - AFTER BURNERS INSTALLATION",5121,"HK1003-Rev.0E-3",TT_Task,"55902",-,-,-,0,TK_NotStart,19/11/2022,,09/12/2022,,"SI20MB-6-56 FS","SI20MB-6-56","SI20MBA8-10 FS,SI20MA-6B84 FS","SI20MBA8-10,SI20MA-6B84",120,,122,,28,,28,,85,176,"HK1003 -Blackpoint D2 - Rev.0E DD30092021"
1-2571,SI20UTG2-5,"(MS3) CONCRETE STRUCTURE FINAL DIMENSIONS, LOADS AVAILABLE 20UTG01",5121,"HK1003-Rev.0E-3",TT_FinMile,"55902",-,-,-,100,TK_Complete,15/08/2021,15/08/2021,15/08/2021,15/08/2021,"SI--PM-2-30 FS,SI20QJ-2-85 FS","SI--PM-2-30,SI20QJ-2-85","SI20UTG2-10 FS,SI20UTG2-20 FS,SI20UTG2-15 FS,SI20UTG2S-2 FS","SI20UTG2-10,SI20UTG2-20,SI20UTG2-15,SI20UTG2S-2",54,54,54,54,12,12,12,12,26,,"HK1003 -Blackpoint D2 - Rev.0E DD30092021"
1-2572,SI20UBD2-05,"(MS3) CONCRETE STRUCTURE FINAL DIMENSIONS, LOADS AVAILABLE 20UBD01/02",5121,"HK1003-Rev.0E-3",TT_FinMile,"55902",-,-,-,100,TK_Complete,29/07/2021,29/07/2021,29/07/2021,29/07/2021,"SI--BFT2-60 FS","SI--BFT2-60","SI20UBD2-15 FS,SI20UBD2-10 FS,SI20UBD2C-87 FS","SI20UBD2-15,SI20UBD2-10,SI20UBD2C-87",51,51,51,51,12,12,12,12,23,,"HK1003 -Blackpoint D2 - Rev.0E DD30092021"
1-2573,SI20UBD2-15,"DETAIL DESIGN CONCRETE - 20UBD01/02",5121,"HK1003-Rev.0E-3",TT_Task,"55902",-,-,-,91,TK_Active,20/08/2021,20/08/2021,03/10/2021,,"SI20UBD2-05 FS,SI20UBD2-10 FS","SI20UBD2-05,SI20UBD2-10","SI--BZP2-30 SS,SI20UBD2-75 FS,SI20UBD2-20 FS,SI20UBD2-84 FF","SI--BZP2-30,SI20UBD2-75,SI20UBD2-20,SI20UBD2-84",54,54,61,,12,12,14,,26,920,"HK1003 -Blackpoint D2 - Rev.0E DD30092021"
1-2574,SI20UBD2-75,"(F) CONCRETE STRUCTURE DWGS ON SITE RELEASED FOR EXECUTION 20UBD01/02",5121,"HK1003-Rev.0E-3",TT_FinMile,"55902",-,-,-,0,TK_NotStart,29/04/2022,,29/04/2022,,"SI20UBD2-84 FS,SI20UBD2-15 FS,SI20UBD2-30 FS","SI20UBD2-84,SI20UBD2-15,SI20UBD2-30","SI20UBD5-05 FS","SI20UBD5-05",90,,90,,21,,21,,60,1064,"HK1003 -Blackpoint D2 - Rev.0E DD30092021"
1-2575,SI20UBD2E60,"(MS3) CONCRETE STRUCTURE FINAL DIMENSIONS, LOADS AVAILABLE 20UBD03/04",5121,"HK1003-Rev.0E-3",TT_FinMile,"55902",-,-,-,100,TK_Complete,29/07/2021,29/07/2021,29/07/2021,29/07/2021,"SI--BFT2-60 FS","SI--BFT2-60","SI20UBD2E73 FS,SI20UBA2C78 FS,SI20UBD2C-81 FS","SI20UBD2E73,SI20UBA2C78,SI20UBD2C-81",51,51,51,51,12,12,12,12,23,,"HK1003 -Blackpoint D2 - Rev.0E DD30092021"
1-2576,SI20UBD2E73,"DETAIL DESIGN, CHECKER CONCRETE STRUCTURE 20UBD03/04",5121,"HK1003-Rev.0E-3",TT_Task,"55902",-,-,-,62,TK_Active,04/09/2021,04/09/2021,15/10/2021,,"SI20UBD2E60 FS,SI20UBA2C78 FS","SI20UBD2E60,SI20UBA2C78","SI20UBD2E75 FS,SI20UBD2E90 FS","SI20UBD2E75,SI20UBD2E90",57,57,62,,13,13,14,,28,1832,"HK1003 -Blackpoint D2 - Rev.0E DD30092021"
1-2577,SI20UBD2E75,"(F) CONCRETE STRUCTURE DWGS ON SITE RELEASED FOR EXECUTION 20UBD03/04",5121,"HK1003-Rev.0E-3",TT_FinMile,"55902",-,-,-,0,TK_NotStart,18/04/2022,,18/04/2022,,"SI20UBD2E73 FS,SI20UBD2E92 FS","SI20UBD2E73,SI20UBD2E92","SI20UBD5-55 FS","SI20UBD5-55",89,,89,,20,,20,,58,1456,"HK1003 -Blackpoint D2 - Rev.0E DD30092021"
1-2578,SI20UPY2-5,"(MS3) CONCRETE STRUCTURE FINAL DIMENSIONS, LOADS AVAILABLE 20UPY",5121,"HK1003-Rev.0E-3",TT_FinMile,"55902",-,-,-,100,TK_Complete,01/05/2021,01/05/2021,01/05/2021,01/05/2021,"SI-----1-03 FS,SI20UPY2-02 FS","SI-----1-03,SI20UPY2-02","SI20UPY2-15 FS,SI20UPY2-10 FS","SI20UPY2-15,SI20UPY2-10",39,39,39,39,9,9,9,9,10,,"HK1003 -Blackpoint D2 - Rev.0E DD30092021"
1-2579,SI20UPY2-35,"(F) CONCRETE STRUCTURE DWGS ON SITE RELEASED FOR EXECUTION 20UPY",5121,"HK1003-Rev.0E-3",TT_FinMile,"55902",-,-,-,100,TK_Complete,07/09/2021,07/09/2021,07/09/2021,07/09/2021,"SI20UPY2-15 FS,SI20UPY2-40 FS","SI20UPY2-15,SI20UPY2-40","SI20UPY5P05.00 FS","SI20UPY5P05.00",57,57,57,57,13,13,13,13,28,,"HK1003 -Blackpoint D2 - Rev.0E DD30092021"
1-2580,SI20UPY2-15,"DETAIL DESIGN, CHECKER CONCRETE STRUCTURE 20UPY",5121,"HK1003-Rev.0E-3",TT_Task,"55902",-,-,-,100,TK_Complete,30/05/2021,30/05/2021,15/07/2021,15/07/2021,"SI20UPY2-5 FS,SI20UPY2-10 FS,SI20UMC2B20 FF","SI20UPY2-5,SI20UPY2-10,SI20UMC2B20","SI20UPY2-35 FS,SI20UPY2-20 FS","SI20UPY2-35,SI20UPY2-20",43,43,49,49,10,10,11,11,15,,"HK1003 -Blackpoint D2 - Rev.0E DD30092021"
1-2581,SI20UEN5-23,"(RFE) FOUNDATION 01UEN",5121,"HK1003-Rev.0E-3",TT_Mile,"55902",-,-,-,0,TK_NotStart,05/05/2022,,05/05/2022,,"SI20UEN5-17.03 FS","SI20UEN5-17.03","SI20SGY7-17 FS,SI20BAW5C15 FS,SI20UEN5D50 FS,SI20EK-6-19 FS,SI20BZL7E19 FS","SI20SGY7-17,SI20BAW5C15,SI20UEN5D50,SI20EK-6-19,SI20BZL7E19",91,,91,,21,,21,,63,1248,"HK1003 -Blackpoint D2 - Rev.0E DD30092021"
1-2582,SI20UEN5-21,"(H) START PLACING FORMWORK 01UEN",5121,"HK1003-Rev.0E-3",TT_Mile,"55902",-,-,-,0,TK_NotStart,03/02/2022,,03/02/2022,,"SI-----5-21& FS,SI20UEN2-109 FS,SI20UEN5-19.01 FS","SI-----5-21&,SI20UEN2-109,SI20UEN5-19.01","SI20UEN5-17.00 FS","SI20UEN5-17.00",78,,78,,18,,18,,48,1248,"HK1003 -Blackpoint D2 - Rev.0E DD30092021"
1-2583,SI20MB-6-56,"BURNERS INSTALLATION ERECTION GT20",5121,"HK1003-Rev.0E-3",TT_Task,"55902",-,-,-,0,TK_NotStart,22/10/2022,,18/11/2022,,"SI20MBA6F15 SS,SI20MB-6-38 FF","SI20MBA6F15,SI20MB-6-38","SI20MB-6-57 FS,SI20MBV6-55 FS","SI20MB-6-57,SI20MBV6-55",116,,119,,27,,27,,84,176,"HK1003 -Blackpoint D2 - Rev.0E DD30092021"
1-2584,SI20CJ-4-10,"TRANSPORT TO TESTING FACILITY BOP I&C CABINETS FOR ELECTRICAL MODULES�S",5121,"HK1003-Rev.0E-3",TT_Task,"55902",-,-,-,0,TK_NotStart,12/11/2021,,17/11/2021,,"SI20CJ-3-52 FS,SI20CJ-3-25 FS","SI20CJ-3-52,SI20CJ-3-25","SI20UBA4-66 FS,SI20UBA4G62 FS","SI20UBA4-66,SI20UBA4G62",66,,67,,15,,15,,38,1064,"HK1003 -Blackpoint D2 - Rev.0E DD30092021"
1-2585,SI20CJ-3-25,"MANUFACTURING I&C CABINETS FOR ELECTRICAL MODULES's AND OM EQUIP. FOR PRECOMMISSIONING TEST",5121,"HK1003-Rev.0E-3",TT_Task,"55902",-,-,-,55,TK_Active,31/08/2021,31/08/2021,24/10/2021,,"SI--2222-30 FS,SI20CJ-3-21 FF","SI--2222-30,SI20CJ-3-21","SI20CJ-4-10 FS","SI20CJ-4-10",56,56,64,,13,13,14,,27,1208,"HK1003 -Blackpoint D2 - Rev.0E DD30092021"
1-2586,SI20CJ-2-50,"(DF) BOP I&C HW FOR ELECTRICAL MODULES",5121,"HK1003-Rev.0E-3",TT_FinMile,"55902",-,-,-,100,TK_Complete,19/07/2021,19/07/2021,19/07/2021,19/07/2021,"SI--B--2A55 FS,SP--B--2-59 FS,SP--B--2-60 FS,SI20CJ-3-20 FS","SI--B--2A55,SP--B--2-59,SP--B--2-60,SI20CJ-3-20","SI20CHY3-26 FS","SI20CHY3-26",50,50,50,50,11,11,11,11,22,,"HK1003 -Blackpoint D2 - Rev.0E DD30092021"
1-2587,SI20CJ-3-52,"MANUFACTURING BOP AP Server + PLC/CS3000 - Cabinets (Protection) (FOR PRECOMMISSIONING TEST)",5121,"HK1003-Rev.0E-3",TT_Task,"55902",-,-,-,41,TK_Active,31/08/2021,31/08/2021,11/11/2021,,"SI20CJ-2-51 FS,SI--2222-30 FS,SI20CJ-3-21 FF","SI20CJ-2-51,SI--2222-30,SI20CJ-3-21","SI20CJ-4-10 FS","SI20CJ-4-10",56,56,66,,13,13,15,,27,1064,"HK1003 -Blackpoint D2 - Rev.0E DD30092021"
1-2588,SI20CJ-2-51,"(DF) BOP Server + AP - Cabinets (Protection)",5121,"HK1003-Rev.0E-3",TT_FinMile,"55902",-,-,-,100,TK_Complete,19/07/2021,19/07/2021,19/07/2021,19/07/2021,"SI20CJ-3-20 FS","SI20CJ-3-20","SP20CJP2-70 FS,SI20CJ-3-52 FS","SP20CJP2-70,SI20CJ-3-52",50,50,50,50,11,11,11,11,22,,"HK1003 -Blackpoint D2 - Rev.0E DD30092021"
1-2589,SI20CJ-3-20,"DETAIL DESIGN HW ENGINEERING HRSG I&C CABINETS FOR ELECTRICAL MODULES's AND OM EQUIP. FOR PRECOMMISSIONING TEST",5121,"HK1003-Rev.0E-3",TT_Task,"55902",-,-,-,100,TK_Complete,26/04/2021,26/04/2021,17/07/2021,18/07/2021,"SI--C--2-85 FS,SI--C--2A40 FS","SI--C--2-85,SI--C--2A40","SI20CJ-2-50 FS,SI20CJ-2-51 FS,SI20CHY3-26 FS","SI20CJ-2-50,SI20CJ-2-51,SI20CHY3-26",38,38,50,50,8,8,11,11,10,,"HK1003 -Blackpoint D2 - Rev.0E DD30092021"
1-2590,SP20CJP2-70,"(DF) DESIGN FREEZE GT I&C (INPUT TO GT AUTOMATION)",5121,"HK1003-Rev.0E-3",TT_Mile,"55902",-,-,-,100,TK_Complete,19/07/2021,19/07/2021,19/07/2021,19/07/2021,"SI20CJ-2-51 FS,SI--M--2D20 FS,SI20TPI12A2-10 FS,SI20TPI13A2-10 FS,SI20TPI1A2-10 FS,SI20TPI4A2-10 FS,SI20TPI5A2-10 FS,SI20TPI6A2-10 FS,SI20TPI10A2-10 FS,SI20TPI17A2-10 FS,SI20TPI19I2-10 FS,SI20TPI19II2-10 FS,SI20TPI21A2-10 FS,SI20TPI22A2-10 FS,SI20TPI23A2-10 FS,SI20TPI15A2-10 FS,SI20TPI16A2-10 FS,SI20TPI20A2-10 FS,SI20TPI3A2-10 FS,SI20TPI18A2-10 FS,SI20TPI2I2-10 FS,SI20TPI2II2-10 FS,SI20TPI2III2-10 FS,SI20TPI2IV2-10 FS","SI20CJ-2-51,SI--M--2D20,SI20TPI12A2-10,SI20TPI13A2-10,SI20TPI1A2-10,SI20TPI4A2-10,SI20TPI5A2-10,SI20TPI6A2-10,SI20TPI10A2-10,SI20TPI17A2-10,SI20TPI19I2-10,SI20TPI19II2-10,SI20TPI21A2-10,SI20TPI22A2-10,SI20TPI23A2-10,SI20TPI15A2-10,SI20TPI16A2-10,SI20TPI20A2-10,SI20TPI3A2-10,SI20TPI18A2-10,SI20TPI2I2-10,SI20TPI2II2-10,SI20TPI2III2-10,SI20TPI2IV2-10","SI--C--2-55 FS,SP--CJP2-38 SS,SP20CJP3A25 FS,SP20CJT4-25 FS,SP20CJT4-10 FS","SI--C--2-55,SP--CJP2-38,SP20CJP3A25,SP20CJT4-25,SP20CJT4-10",50,50,50,50,11,11,11,11,22,,"HK1003 -Blackpoint D2 - Rev.0E DD30092021"
1-2591,SI--C--2A70,"(DF) BOP I&C HW FOR FIELD EQUIPMENT AND CABINETS",5121,"HK1003-Rev.0E-3",TT_FinMile,"55902",-,-,-,0,TK_NotStart,18/11/2021,,18/11/2021,,"SI--C--2A40 FS","SI--C--2A40","SI--CP-3-25 FF,SI--2222-50 FS,SI--C--3E27 FF","SI--CP-3-25,SI--2222-50,SI--C--3E27",67,,67,,15,,15,,38,1632,"HK1003 -Blackpoint D2 - Rev.0E DD30092021"
1-2592,SI--C--2B00,"SETUP T3000 DB",5121,"HK1003-Rev.0E-3",TT_Mile,"55902",-,-,-,100,TK_Complete,28/05/2021,28/05/2021,28/05/2021,28/05/2021,"SI--C--2-85 SS,SI--C--2A40 SS","SI--C--2-85,SI--C--2A40","SI--C--2-50 FS","SI--C--2-50",42,42,42,42,10,10,10,10,14,,"HK1003 -Blackpoint D2 - Rev.0E DD30092021"
1-2593,SP20MAG4-10,"LOGISTICS AND CUSTOMS PREPARATION CONDENSER FOUNDATION PARTS",5121,"HK1003-Rev.0E-3",TT_Task,"55902",-,-,-,100,TK_Complete,10/06/2021,10/06/2021,07/07/2021,07/07/2021,"SP20MAG3D70 FS","SP20MAG3D70","SP20MAG3-80 FS","SP20MAG3-80",44,44,48,48,10,10,11,11,16,,"HK1003 -Blackpoint D2 - Rev.0E DD30092021"
1-2594,SP20MAG3-80,"(RFS) READY FOR SHIPMENT CONDENSER FOUNDATION PARTS",5121,"HK1003-Rev.0E-3",TT_FinMile,"55902",-,-,-,100,TK_Complete,07/07/2021,07/07/2021,07/07/2021,07/07/2021,"SP20MAG4-10 FS","SP20MAG4-10","SP20MAG4B25 FS","SP20MAG4B25",48,48,48,48,11,11,11,11,21,,"HK1003 -Blackpoint D2 - Rev.0E DD30092021"
1-2595,SP20MAG4B40,"(OTD-OS) ON SITE CONDENSER FOUNDATION PARTS",5121,"HK1003-Rev.0E-3",TT_FinMile,"55902",-,-,-,100,TK_Complete,05/09/2021,05/09/2021,05/09/2021,05/09/2021,"SP20MAG4B25 FS","SP20MAG4B25","SI20UMC5A25 FS","SI20UMC5A25",57,57,57,57,13,13,13,13,28,,"HK1003 -Blackpoint D2 - Rev.0E DD30092021"
1-2596,SP20MAG4B25,"TRANSPORT CONDENSER FOUNDATION PARTS",5121,"HK1003-Rev.0E-3",TT_Task,"55902",-,-,-,100,TK_Complete,08/07/2021,08/07/2021,05/09/2021,05/09/2021,"SP20MAG3-80 FS","SP20MAG3-80","SP20MAG4B40 FS","SP20MAG4B40",48,48,57,57,11,11,13,13,21,,"HK1003 -Blackpoint D2 - Rev.0E DD30092021"
1-2597,SI--HA-2A85,"CONTRACT INTO FORCE HRSG (Cockpit)",5121,"HK1003-Rev.0E-3",TT_Mile,"55902",-,-,-,100,TK_Complete,27/01/2021,27/01/2021,27/01/2021,27/01/2021,"SI--HA-2-85 SS","SI--HA-2-85","SI--HA-2A87 FS","SI--HA-2A87",25,25,25,25,5,5,5,5,3,,"HK1003 -Blackpoint D2 - Rev.0E DD30092021"
1-2598,SI20HA-2-85&,"CONTRACT INTO FORCE HRSG",5121,"HK1003-Rev.0E-3",TT_Mile,"55902",-,-,-,100,TK_Complete,27/01/2021,27/01/2021,27/01/2021,27/01/2021,"SI-----1-05 FS","SI-----1-05","SI--HA-2-85 SS","SI--HA-2-85",25,25,25,25,5,5,5,5,3,,"HK1003 -Blackpoint D2 - Rev.0E DD30092021"
1-2599,SI20MKA9-42,"1ST. SYNCHRONIZATION GT GENERATOR 20MKA",5121,"HK1003-Rev.0E-3",TT_Mile,"55902",-,-,-,0,TK_NotStart,03/07/2023,,03/07/2023,,"SI20MKA9-35 FS,SI20BAA7-56 FS,SI20MBA9-25 FS,SI20MKA9-40& FS","SI20MKA9-35,SI20BAA7-56,SI20MBA9-25,SI20MKA9-40&","SI20MB-9-10 FS,SI20HA-9A45 FS,SI20MKA8-72 FS,SI20MKA8-72 SS","SI20MB-9-10,SI20HA-9A45,SI20MKA8-72,SI20MKA8-72",152,,152,,35,,35,,99,0,"HK1003 -Blackpoint D2 - Rev.0E DD30092021"
1-2600,SI20HSJ6-15,"ERECTION SCR SKID HSJ/HSK",5121,"HK1003-Rev.0E-3",TT_Task,"55902",-,-,-,0,TK_NotStart,30/08/2022,,10/10/2022,,"SI20HSJ4-40 FS,SI20HSJ6-16 FS,SI20HSJ4-43 FS","SI20HSJ4-40,SI20HSJ6-16,SI20HSJ4-43","SI20HSJ8-11 FS,SI20L--9I81 FS,SI20UVM-8E26 FS,SI20HSJ6A15 FS","SI20HSJ8-11,SI20L--9I81,SI20UVM-8E26,SI20HSJ6A15",108,,114,,25,,26,,79,928,"HK1003 -Blackpoint D2 - Rev.0E DD30092021"
1-2601,SI20HSJ4-25,"TRANSPORT SCR SKID HSJ/HSK",5121,"HK1003-Rev.0E-3",TT_Task,"55902",-,-,-,0,TK_NotStart,07/06/2022,,01/08/2022,,"SI20HSJ3-80 FS","SI20HSJ3-80","SI20HSJ4-40 FS","SI20HSJ4-40",96,,104,,22,,24,,69,928,"HK1003 -Blackpoint D2 - Rev.0E DD30092021"
1-2602,SI20HS-2-88,"BASIC DESIGN SCR SKID HSJ/HSK",5121,"HK1003-Rev.0E-3",TT_Task,"55902",-,-,-,100,TK_Complete,27/01/2021,27/01/2021,18/03/2021,18/03/2021,"SI--HA-2-05 SS,SI-----1-03 SS,SI--HA-2-85 FS","SI--HA-2-05,SI-----1-03,SI--HA-2-85","SI20HS-2-65 FS,SI20HS-2-89 FS,SI20HSJ3-84 FS","SI20HS-2-65,SI20HS-2-89,SI20HSJ3-84",25,25,32,32,5,5,7,7,3,,"HK1003 -Blackpoint D2 - Rev.0E DD30092021"
1-2603,SI20HSJ3-81,"DESIGN, MANUFACTURING, SHOP TEST SCR SKID HSJ/HSK",5121,"HK1003-Rev.0E-3",TT_Task,"55902",-,-,-,6,TK_Active,17/09/2021,17/09/2021,09/05/2022,,"SI--HA-2-85 FS,SI--3331-32 FS,SI20HS-2-89 FS,SI-----1-05 FS,SI20HSJ3-85 FF,SI20HSJ3-85 FS,SI-P221-566& FS,SI-P221-567& FS","SI--HA-2-85,SI--3331-32,SI20HS-2-89,SI-----1-05,SI20HSJ3-85,SI20HSJ3-85,SI-P221-566&,SI-P221-567&","SI20HSJ3B70 FS,SI20HSJ3B71 FS","SI20HSJ3B70,SI20HSJ3B71",58,58,92,,13,13,21,,29,928,"HK1003 -Blackpoint D2 - Rev.0E DD30092021"
1-2604,SI20HSJ3-80,"(RFS) READY FOR SHIPMENT SCR SKID HSJ/HSK (Incl. Equipment / Material belonging to it)",5121,"HK1003-Rev.0E-3",TT_FinMile,"55902",-,-,-,0,TK_NotStart,06/06/2022,,06/06/2022,,"SI20HSJ4B10 FS","SI20HSJ4B10","SI20HSJ4-25 FS","SI20HSJ4-25",96,,96,,22,,22,,68,928,"HK1003 -Blackpoint D2 - Rev.0E DD30092021"
1-2605,SI20HSJ8-26,"COLD COMMISSIONING SCR AMMONIA STORAGE & SUPPLY HSJ/HSK",5121,"HK1003-Rev.0E-3",TT_Task,"55902",-,-,-,0,TK_NotStart,16/06/2023,,22/06/2023,,"SI20HSJ8-11 FS,SI-PM-40 FS,SI20TPI16A8-30 FS,SI20B--8-52 FS,SI20B--8-50 FS,SI20CPC8-25 FS,SI20TPM13A8-30 FF,SI20TPM13B8-30 FF,SI20TPM14A8-30 FF,SI20TPM14B8-30 FF","SI20HSJ8-11,SI-PM-40,SI20TPI16A8-30,SI20B--8-52,SI20B--8-50,SI20CPC8-25,SI20TPM13A8-30,SI20TPM13B8-30,SI20TPM14A8-30,SI20TPM14B8-30","SI20M--9-60 FS,SI20MB-9-15 FS,SI20CFE8-36 FF,SI20CFE8-35 FS","SI20M--9-60,SI20MB-9-15,SI20CFE8-36,SI20CFE8-35",149,,150,,34,,35,,98,64,"HK1003 -Blackpoint D2 - Rev.0E DD30092021"
1-2606,SI20HSJ8-11,"(TOP-20HSJ) CHEMICAL SUPPLY SYSTEM FOR SCR-CAT",5121,"HK1003-Rev.0E-3",TT_FinMile,"55902",-,-,-,0,TK_NotStart,15/06/2023,,15/06/2023,,"SI20HSJ6-15 FS,SI20HSJ6-17 FS,SI20HSJ7A15 FS,SI20BZK7-190 FS,SI20BZK7-200 FS","SI20HSJ6-15,SI20HSJ6-17,SI20HSJ7A15,SI20BZK7-190,SI20BZK7-200","SI20HSJ8-26 FS,SI20TPM13A8-30 FS,SI20TPM13B8-30 FS,SI20TPM14A8-30 FS,SI20TPM14B8-30 FS","SI20HSJ8-26,SI20TPM13A8-30,SI20TPM13B8-30,SI20TPM14A8-30,SI20TPM14B8-30",149,,149,,34,,34,,98,64,"HK1003 -Blackpoint D2 - Rev.0E DD30092021"
1-2607,SI20HS-2-89,"(DF) P&ID'S SCR SKID HSJ/HSK",5121,"HK1003-Rev.0E-3",TT_FinMile,"55902",-,-,-,100,TK_Complete,18/03/2021,18/03/2021,18/03/2021,18/03/2021,"SI20HS-2-88 FS","SI20HS-2-88","SI--HA-2A87 FS,SI--HA-2-65 FS,SI20HS-2-87 FS,SI20HSJ3-81 FS,SI20HSJ2-94 FS","SI--HA-2A87,SI--HA-2-65,SI20HS-2-87,SI20HSJ3-81,SI20HSJ2-94",32,32,32,32,7,7,7,7,6,,"HK1003 -Blackpoint D2 - Rev.0E DD30092021"
1-2608,SI20HS-2-87,"(DF) INPUT FOR MS3 SCR SKID HSJ/HSK",5121,"HK1003-Rev.0E-3",TT_FinMile,"55902",-,-,-,100,TK_Complete,01/04/2021,01/04/2021,01/04/2021,01/04/2021,"SI-----1-01 SS,SI--3331-32 FS,SI20HS-2-89 FS,SI-----1-05 FS,SI20HS-2-65 FS","SI-----1-01,SI--3331-32,SI20HS-2-89,SI-----1-05,SI20HS-2-65","SI20UVM2-60 FS","SI20UVM2-60",34,34,34,34,8,8,8,8,7,,"HK1003 -Blackpoint D2 - Rev.0E DD30092021"
1-2609,SI20HS-2-65,"(DF) INPUT FOR M2 SCR SKID HSJ/HSK",5121,"HK1003-Rev.0E-3",TT_FinMile,"55902",-,-,-,100,TK_Complete,18/03/2021,18/03/2021,18/03/2021,18/03/2021,"SI20HS-2-88 FS","SI20HS-2-88","SI20HS-2-87 FS","SI20HS-2-87",32,32,32,32,7,7,7,7,6,,"HK1003 -Blackpoint D2 - Rev.0E DD30092021"
1-2610,SI20HSJ4-40,"(OTD-OS) ON SITE SCR SKID HSJ/HSK",5121,"HK1003-Rev.0E-3",TT_FinMile,"55902",-,-,-,0,TK_NotStart,01/08/2022,,01/08/2022,,"SI20HSJ4-25 FS","SI20HSJ4-25","SI20HSJ6-15 FS,SI20HSJ6-16 FS","SI20HSJ6-15,SI20HSJ6-16",104,,104,,24,,24,,76,928,"HK1003 -Blackpoint D2 - Rev.0E DD30092021"
1-2611,SI--SMM2-86,"(DF) MS3 INPUT FOR CRANES 20SMM01/02 FOR 20UMC",5121,"HK1003-Rev.0E-3",TT_FinMile,"55902",-,-,-,100,TK_Complete,03/05/2021,03/05/2021,03/05/2021,03/05/2021,"SI--SMM2-85 FS","SI--SMM2-85","SI20SMM3-25 FS,SI--UMC2B60 FS,SI--UMC2B92 FS","SI20SMM3-25,SI--UMC2B60,SI--UMC2B92",39,39,39,39,9,9,9,9,11,,"HK1003 -Blackpoint D2 - Rev.0E DD30092021"
1-2612,SI20QC-3-25,"DETAIL DESIGN DOSING CONTAINER 20QC",5121,"HK1003-Rev.0E-3",TT_Task,"55902",-,-,-,61,TK_Active,31/08/2021,31/08/2021,18/10/2021,,"SI20QC-2-85 FS","SI20QC-2-85","SI20QC-3-26 FS","SI20QC-3-26",56,56,63,,13,13,14,,27,1696,"HK1003 -Blackpoint D2 - Rev.0E DD30092021"
1-2613,SI20ULY4M10,"LOGISTICS AND CUSTOMS PREPARATION MODULE 20ULY00Y",5121,"HK1003-Rev.0E-3",TT_Task,"55902",-,-,-,0,TK_NotStart,03/02/2022,,02/03/2022,,"SI20ULY3M70 FS","SI20ULY3M70","SI20ULY3M80 FS","SI20ULY3M80",78,,82,,18,,19,,48,248,"HK1003 -Blackpoint D2 - Rev.0E DD30092021"
1-2614,SI20ULY3M70,"TIMES OF COMPLETION (FINAL DATA IN KANLOG) MODULE 20ULY00Y",5121,"HK1003-Rev.0E-3",TT_FinMile,"55902",-,-,-,0,TK_NotStart,03/02/2022,,03/02/2022,,"SI20---3M70 FS","SI20---3M70","SI20ULY4M10 FS","SI20ULY4M10",78,,78,,18,,18,,48,248,"HK1003 -Blackpoint D2 - Rev.0E DD30092021"
1-2615,SI20ULY3M80,"(RFS) READY FOR SHIPMENT MODULE 20ULY00Y",5121,"HK1003-Rev.0E-3",TT_FinMile,"55902",-,-,-,0,TK_NotStart,02/03/2022,,02/03/2022,,"SI20ULY4M10 FS","SI20ULY4M10","SI20ULY4M25 FS","SI20ULY4M25",82,,82,,19,,19,,51,248,"HK1003 -Blackpoint D2 - Rev.0E DD30092021"
1-2616,SP20MB-3-26,"PROJECT SPECIFIC DESIGN AND INTERFACE CLARIFICATIONS",5121,"HK1003-Rev.0E-3",TT_Task,"55902",-,-,-,100,TK_Complete,11/12/2020,11/12/2020,14/01/2021,14/01/2021,"SI-----1-03 SS","SI-----1-03","SP20MB-3-25 SS,SP20MBL2-80 SS,SP20MA-3-25 FS,SP--MB-3G75 FS,SP20MB-3D25 FS,SP20MB-3F25 FS,SP20MB-3-25 FS","SP20MB-3-25,SP20MBL2-80,SP20MA-3-25,SP--MB-3G75,SP20MB-3D25,SP20MB-3F25,SP20MB-3-25",18,18,23,23,4,4,5,5,1,,"HK1003 -Blackpoint D2 - Rev.0E DD30092021"
1-2617,SI20BZP7-115,"ERECTION CABLE TRAYS ON 20ULY01",5121,"HK1003-Rev.0E-3",TT_Task,"55902",-,-,-,0,TK_NotStart,04/08/2022,,10/08/2022,,"SI--PEE7-20 FS,SI--2227-68 FS,SI--BZP4B40 FS,SI--BZP2-05 FS,SI20UBA7-102 FS,SI20ULY4-110 FS,SI20ULY5-145 FS,SI20ULY5-115 FS,SI20BZP7-26 FS,SI--PEE7-20 SS,SI20HB-6-44 FS","SI--PEE7-20,SI--2227-68,SI--BZP4B40,SI--BZP2-05,SI20UBA7-102,SI20ULY4-110,SI20ULY5-145,SI20ULY5-115,SI20BZP7-26,SI--PEE7-20,SI20HB-6-44","SI20BZK7D25 FS,SI20BZP7B10# FF,SI20BZP7B10# SS,SI20BZK7B28 FS","SI20BZK7D25,SI20BZP7B10#,SI20BZP7B10#,SI20BZK7B28",104,,105,,24,,24,,76,968,"HK1003 -Blackpoint D2 - Rev.0E DD30092021"
1-2618,SI20QU-4B10,"LOGISTICS AND CUSTOMS PREPARATION SAMPLING CONTAINER 20QU",5121,"HK1003-Rev.0E-3",TT_Task,"55902",-,-,-,0,TK_NotStart,19/12/2021,,15/01/2022,,"SI20QU-3B70 FS","SI20QU-3B70","SI20QU-3-80 FS","SI20QU-3-80",72,,76,,16,,17,,43,2800,"HK1003 -Blackpoint D2 - Rev.0E DD30092021"
1-2619,SI20QU-3B70,"TIMES OF COMPLETION (FINAL DATA IN KANLOG) SAMPLING CONTAINER 20QU",5121,"HK1003-Rev.0E-3",TT_FinMile,"55902",-,-,-,0,TK_NotStart,18/12/2021,,18/12/2021,,"SI20QU-3-26 FS","SI20QU-3-26","SI20QU-4B10 FS","SI20QU-4B10",72,,72,,16,,16,,43,2800,"HK1003 -Blackpoint D2 - Rev.0E DD30092021"
1-2620,SP20MA-4C40,"(OTD-OS) ON SITE ST LP OUTER CASING MA-",5121,"HK1003-Rev.0E-3",TT_FinMile,"55902",-,-,-,0,TK_NotStart,08/07/2022,,08/07/2022,,"SP20MA-4C25 FS","SP20MA-4C25","SI20MA-6B00 FS","SI20MA-6B00",100,,100,,23,,23,,73,8,"HK1003 -Blackpoint D2 - Rev.0E DD30092021"
1-2621,SP20MAN4-40,"(OTD-OS) ON SITE ST BYPASS VALVES MA",5121,"HK1003-Rev.0E-3",TT_FinMile,"55902",-,-,-,0,TK_NotStart,21/07/2022,,21/07/2022,,"SP20MAN4-25 FS","SP20MAN4-25","SI20MAN6-15 FS","SI20MAN6-15",102,,102,,23,,23,,74,192,"HK1003 -Blackpoint D2 - Rev.0E DD30092021"
1-2622,SP20MAV4-40,"(OTD-OS) ON SITE LUBE OIL MODULE 20MAV",5121,"HK1003-Rev.0E-3",TT_FinMile,"55902",-,-,-,0,TK_NotStart,20/07/2022,,20/07/2022,,"SI20MAV4-25 FS","SI20MAV4-25","SI20MAV6-15 FS","SI20MAV6-15",102,,102,,23,,23,,74,408,"HK1003 -Blackpoint D2 - Rev.0E DD30092021"
1-2623,SI20SGM8-34,"(TOP-20SGM-04) FF INERTGAS SYSTEM IN 20UBA8110/20 SGM INSIDE CONTAINERS",5121,"HK1003-Rev.0E-3",TT_FinMile,"55902",-,-,-,0,TK_NotStart,10/04/2023,,10/04/2023,,"SI20SGM6-18 FS","SI20SGM6-18","SI20SGM8-33 FS","SI20SGM8-33",140,,140,,32,,32,,94,200,"HK1003 -Blackpoint D2 - Rev.0E DD30092021"
1-2624,SI20SGM6-18,"ERECTION FF INERTGAS SYSTEM IN 20UBA8110/20 SGM",5121,"HK1003-Rev.0E-3",TT_Task,"55902",-,-,-,0,TK_NotStart,12/12/2022,,18/12/2022,,"SI--SG-2-05 FS,SI20UBA7-16 FS,SI20SG-4-41 FS,SI-P222-65 FS,SI20UBA7-105 SS","SI--SG-2-05,SI20UBA7-16,SI20SG-4-41,SI-P222-65,SI20UBA7-105","SI20SGY6-22 SS,SI20SGM8-34 FS,SI-P222-133 FS,SI-P222-173 FF,SI-P222-135 FS","SI20SGY6-22,SI20SGM8-34,SI-P222-133,SI-P222-173,SI-P222-135",123,,124,,28,,28,,87,264,"HK1003 -Blackpoint D2 - Rev.0E DD30092021"
1-2625,SI20SGM8-33,"COLD COMMISSIONING FF INERTGAS SYSTEM IN 20UBA8110/20 SGM INSIDE CONTAINERS",5121,"HK1003-Rev.0E-3",TT_Task,"55902",-,-,-,0,TK_NotStart,11/04/2023,,17/04/2023,,"SI20SGM8-34 FS,SI-PM-40 FS,SI20B--8-50 FS","SI20SGM8-34,SI-PM-40,SI20B--8-50","SI20BFC8-25 FS","SI20BFC8-25",140,,141,,32,,32,,94,200,"HK1003 -Blackpoint D2 - Rev.0E DD30092021"
1-2626,SI20BZP7-85,"ERECTION CABLE TRAYS BELOW ELECTRICAL MODULES 20UBA8110/20",5121,"HK1003-Rev.0E-3",TT_Task,"55902",-,-,-,0,TK_NotStart,29/10/2022,,04/11/2022,,"SI--PEE7-20 FS,SI--2227-68 FS,SI--BZP2-05 FS,SI--BZP4B40 FS,SI20UBY5-60 FS,SI20BZP7-26 FS,SI--PEE7-20 SS,SI20BZP7-140 FS,SI20UBA5-100 FS","SI--PEE7-20,SI--2227-68,SI--BZP2-05,SI--BZP4B40,SI20UBY5-60,SI20BZP7-26,SI--PEE7-20,SI20BZP7-140,SI20UBA5-100","SI20BZK7B24 FS,SI20UBA7-16 SS,SI20UBA7-27 FS,SI20UBA5-93 FS,SI20BZP7B10# FF,SI20BZP7B10# SS","SI20BZK7B24,SI20UBA7-16,SI20UBA7-27,SI20UBA5-93,SI20BZP7B10#,SI20BZP7B10#",117,,117,,27,,27,,84,184,"HK1003 -Blackpoint D2 - Rev.0E DD30092021"
1-2627,SI20SGY6-22,"ERECTION FIRE DETECTION SYSTEM IN 20UBA8110/20 SGY",5121,"HK1003-Rev.0E-3",TT_Task,"55902",-,-,-,0,TK_NotStart,26/12/2022,,01/01/2023,,"SI20SGY4A40 FS,SI--SGY2-05 FS,SI20SGM6-18 SS,SI20UBA7-16 FS,SI20SGY4A40 FF,SI20UBA7-105 FS,SI-P222-65 FS","SI20SGY4A40,SI--SGY2-05,SI20SGM6-18,SI20UBA7-16,SI20SGY4A40,SI20UBA7-105,SI-P222-65","SI20BFC8-25 FS","SI20BFC8-25",125,,126,,29,,29,,87,1048,"HK1003 -Blackpoint D2 - Rev.0E DD30092021"
1-2628,SI20PAD7-33,"E- AND I&C-CONNECTION AVAILABLE 20PAD LAST 4 CELLS",5121,"HK1003-Rev.0E-3",TT_FinMile,"55902",-,-,-,0,TK_NotStart,12/05/2023,,12/05/2023,,"SI20BZP7-145 FS,SI20BZP7-155 FS,SI20PAD6-69 FS","SI20BZP7-145,SI20BZP7-155,SI20PAD6-69","SI--BFT8-10 FS,SI20PAD8-10 FS,SI20PAD7-35 FF","SI--BFT8-10,SI20PAD8-10,SI20PAD7-35",144,,144,,33,,33,,97,64,"HK1003 -Blackpoint D2 - Rev.0E DD30092021"
1-2629,SI20LDK7H16,"ELECTRICAL ERECTION PIPES / VALVES 20LDK",5121,"HK1003-Rev.0E-3",TT_Task,"55902",-,-,-,0,TK_NotStart,02/02/2023,,15/02/2023,,"SI20BZK7E25 FF,SI20LDK6A15 FS,SI20BZP7D18 FS,SI20BZP7D19 FS,SI20BZP7-5 FS,SI20BZP7-196 FS,SI20BZP7-174 FS,SI20UMY6M10 FS,SI20UMY6M11 FS,SI20UMY6M12 FS,SI--2227-68 FS,SI--BZP2-05 FS,SI--PEE7-20 FS,SI--BZP4B40 FS,SI20LDK6A16 FS","SI20BZK7E25,SI20LDK6A15,SI20BZP7D18,SI20BZP7D19,SI20BZP7-5,SI20BZP7-196,SI20BZP7-174,SI20UMY6M10,SI20UMY6M11,SI20UMY6M12,SI--2227-68,SI--BZP2-05,SI--PEE7-20,SI--BZP4B40,SI20LDK6A16","SI20LD8B110 FS,SI20LAC8B10 FS,SI20LDK6B55 SS","SI20LD8B110,SI20LAC8B10,SI20LDK6B55",130,,132,,30,,30,,89,296,"HK1003 -Blackpoint D2 - Rev.0E DD30092021"
1-2630,SI20PAS2B10,"(DF) INPUT FOR MS3 CT MAKE-UP WATER PUMP PAS",5121,"HK1003-Rev.0E-3",TT_FinMile,"55902",-,-,-,100,TK_Complete,27/06/2021,27/06/2021,27/06/2021,27/06/2021,"SI20PAS2A85 SS","SI20PAS2A85","SI20UQZ2-103 FS","SI20UQZ2-103",47,47,47,47,11,11,11,11,19,,"HK1003 -Blackpoint D2 - Rev.0E DD30092021"
1-2631,SI20PAS2B65,"(DF) INPUT FOR M2 CT MAKE-UP WATER PUMP PAS",5121,"HK1003-Rev.0E-3",TT_FinMile,"55902",-,-,-,100,TK_Complete,19/07/2021,19/07/2021,19/07/2021,19/07/2021,"SI20PAS2A85 SS","SI20PAS2A85","SI---4P2A10 SS","SI---4P2A10",50,50,50,50,11,11,11,11,22,,"HK1003 -Blackpoint D2 - Rev.0E DD30092021"
1-2632,SP--CJT2-88,"ORDERING / NEGOTIATIONS SEE CUBICLES CJT",5121,"HK1003-Rev.0E-3",TT_Task,"55902",-,-,-,100,TK_Complete,02/04/2021,02/04/2021,27/05/2021,27/05/2021,"SP--CJT2-76 FS","SP--CJT2-76","SP--CJT2-86 FS","SP--CJT2-86",34,34,42,42,8,8,9,9,7,,"HK1003 -Blackpoint D2 - Rev.0E DD30092021"
1-2633,SP--CJT2-76,"PREPARATION OF SPEC. / ORDER DOCU. SEE CUBICLES CJT",5121,"HK1003-Rev.0E-3",TT_Task,"55902",-,-,-,100,TK_Complete,19/02/2021,19/02/2021,01/04/2021,01/04/2021,"SP--CJT2-77 SS","SP--CJT2-77","SP--MKC2-75 SS,SP--C--2-15 FS,SP--CJT2-88 FS","SP--MKC2-75,SP--C--2-15,SP--CJT2-88",28,28,34,34,6,6,8,8,5,,"HK1003 -Blackpoint D2 - Rev.0E DD30092021"
1-2634,SP--CJT2-86,"CONTRACT INTO FORCE SEE CUBICLES CJT",5121,"HK1003-Rev.0E-3",TT_Mile,"55902",-,-,-,100,TK_Complete,28/05/2021,28/05/2021,28/05/2021,28/05/2021,"SP--CJT2-88 FS,SI--3332-76 SS,SI--UBA2G85 FS","SP--CJT2-88,SI--3332-76,SI--UBA2G85","SP20CJT3-81 FS,SP--C--2-15 SS,SP--MKC2-85 FS","SP20CJT3-81,SP--C--2-15,SP--MKC2-85",42,42,42,42,10,10,10,10,14,,"HK1003 -Blackpoint D2 - Rev.0E DD30092021"
1-2635,SP20CJT4-10,"TRANSPORT SEE CUBICLES 20CJT  TO WORKSHOP",5121,"HK1003-Rev.0E-3",TT_Task,"55902",-,-,-,0,TK_NotStart,03/02/2022,,04/02/2022,,"SP20CJT3-81 FS,SP20CJP2-70 FS","SP20CJT3-81,SP20CJP2-70","SP20UBA3H55 FS","SP20UBA3H55",78,,78,,18,,18,,48,744,"HK1003 -Blackpoint D2 - Rev.0E DD30092021"
1-2636,SP20CJT3-81,"MANUFACTURING SEE CUBICLES 20CJT",5121,"HK1003-Rev.0E-3",TT_Task,"55902",-,-,-,40,TK_Active,08/07/2021,08/07/2021,02/02/2022,,"SP--CJT2-86 FS,SI--2222-30 FS","SP--CJT2-86,SI--2222-30","SI20CHY3-25 SS,SP20CJT4-10 FS","SI20CHY3-25,SP20CJT4-10",48,48,78,,11,11,18,,21,744,"HK1003 -Blackpoint D2 - Rev.0E DD30092021"
1-2637,SI20UMC2B55,"(F) CONCRETE STRUCTURE DWGS ON SITE RELEASED FOR EXECUTION 20UMC",5121,"HK1003-Rev.0E-3",TT_FinMile,"55902",-,-,-,100,TK_Complete,31/08/2021,31/08/2021,31/08/2021,31/08/2021,"SI20UMC2B35 FS,SI20UMC2B20 FS,SI20UMC2B40 FS","SI20UMC2B35,SI20UMC2B20,SI20UMC2B40","SI20UMC5B75 FS,SI20UMC5B85 FS,SI20UMC5B90 FS,SI20UMC5B75 FF","SI20UMC5B75,SI20UMC5B85,SI20UMC5B90,SI20UMC5B75",56,56,56,56,13,13,13,13,27,,"HK1003 -Blackpoint D2 - Rev.0E DD30092021"
1-2638,SI20UMC2B20,"DETAIL DESIGN CONCRETE  BUILDING FOUNDATION 20UMC",5121,"HK1003-Rev.0E-3",TT_Task,"55902",-,-,-,100,TK_Complete,29/05/2021,29/05/2021,15/07/2021,15/07/2021,"SI20UMC2B15 FS,SI20UMC2B10 FS,SI--UMC2Y83 FS,SI20BAB2-7 FF,SI--LD-2A63 FF,SI20PAH2-60 FF","SI20UMC2B15,SI20UMC2B10,SI--UMC2Y83,SI20BAB2-7,SI--LD-2A63,SI20PAH2-60","SI20UMC2B25 FF,SI20UMC2B55 FS,SI20UMC2B35 FS,SI20UPY2-15 FF,SI20UEY2-45 FF,SI20UTG2-10 SS,SI20UTG2-42 SS","SI20UMC2B25,SI20UMC2B55,SI20UMC2B35,SI20UPY2-15,SI20UEY2-45,SI20UTG2-10,SI20UTG2-42",43,43,49,49,10,10,11,11,14,,"HK1003 -Blackpoint D2 - Rev.0E DD30092021"
1-2639,SI--6662-26,"PROJECT SETUP DONE, CONTRACT AND DESIGN CRITERIA AVAIL., TERMINAL POINTS FIXED",5121,"HK1003-Rev.0E-3",TT_Mile,"55902",-,-,-,100,TK_Complete,29/01/2021,29/01/2021,29/01/2021,29/01/2021,"SI-----1-03 FS,SI-----1-01 SS,SI--3332-02 SS,SI-----1-01 FS,SI-----1-05 FS","SI-----1-03,SI-----1-01,SI--3332-02,SI-----1-01,SI-----1-05","SI--SG-2-25 FS","SI--SG-2-25",25,25,25,25,6,6,6,6,3,,"HK1003 -Blackpoint D2 - Rev.0E DD30092021"
1-2640,SI--BZP4-11,"LOGISTICS AND CUSTOMS PREPARATION CABLE SUPPORT SYSTEM BZP (LOT 2)",5121,"HK1003-Rev.0E-3",TT_Task,"55902",-,-,-,0,TK_NotStart,22/07/2022,,18/08/2022,,"SI--BZP3-71 FS","SI--BZP3-71","SI--BZP3-81 FS","SI--BZP3-81",102,,106,,24,,24,,74,296,"HK1003 -Blackpoint D2 - Rev.0E DD30092021"
1-2641,SI--BZP3-71,"TIMES OF COMPLETION (FINAL DATA IN KANLOG) CABLE SUPPORT SYSTEM BZP (LOT 2)",5121,"HK1003-Rev.0E-3",TT_FinMile,"55902",-,-,-,0,TK_NotStart,21/07/2022,,21/07/2022,,"SI--BZP3-26 FS","SI--BZP3-26","SI--BZP4-11 FS","SI--BZP4-11",102,,102,,23,,23,,74,296,"HK1003 -Blackpoint D2 - Rev.0E DD30092021"
1-2642,SI--BZP2-86,"CONTRACT INTO FORCE CABLE SUPPORT SYSTEM BZP (LOT 2)",5121,"HK1003-Rev.0E-3",TT_Mile,"55902",-,-,-,0,TK_NotStart,27/05/2022,,27/05/2022,,"SI--BZP2-85 SS,SI--BZP2-80 FS,SI--BZP2-50 FS","SI--BZP2-85,SI--BZP2-80,SI--BZP2-50","SI--BZP3-26 FS","SI--BZP3-26",94,,94,,22,,22,,66,296,"HK1003 -Blackpoint D2 - Rev.0E DD30092021"
1-2643,SI--BZP3-81,"(RFS) READY FOR SHIPMENT CABLE SUPPORT SYSTEM BZP (LOT 2)",5121,"HK1003-Rev.0E-3",TT_FinMile,"55902",-,-,-,0,TK_NotStart,18/08/2022,,18/08/2022,,"SI--BZP4-11 FS","SI--BZP4-11","SI--BZP4-26 FS","SI--BZP4-26",106,,106,,24,,24,,78,296,"HK1003 -Blackpoint D2 - Rev.0E DD30092021"
1-2644,SI--BZP3-26,"MANUFACTURING / SHOP TEST CABLE SUPPORT SYSTEM BZP (LOT 2)",5121,"HK1003-Rev.0E-3",TT_Task,"55902",-,-,-,0,TK_NotStart,27/05/2022,,21/07/2022,,"SI--BZP2-86 FS,SI--2222-30 FS","SI--BZP2-86,SI--2222-30","SI--BZP3-71 FS","SI--BZP3-71",94,,102,,22,,23,,66,296,"HK1003 -Blackpoint D2 - Rev.0E DD30092021"
1-2645,SI--BZP4-26,"TRANSPORT CABLE SUPPORT SYSTEM BZP (LOT 2)",5121,"HK1003-Rev.0E-3",TT_Task,"55902",-,-,-,0,TK_NotStart,19/08/2022,,13/10/2022,,"SI--BZP3-81 FS","SI--BZP3-81","SI--BZP4B41 FS","SI--BZP4B41",106,,114,,24,,26,,78,296,"HK1003 -Blackpoint D2 - Rev.0E DD30092021"
1-2646,SI--BZP4B41,"(OTD-OS) ON SITE CABLE SUPPORT SYSTEM BZP (LOT 2)",5121,"HK1003-Rev.0E-3",TT_FinMile,"55902",-,-,-,0,TK_NotStart,13/10/2022,,13/10/2022,,"SI--BZP4-26 FS","SI--BZP4-26","SI20B--8-10& FS,SI20BZP7B40 FF","SI20B--8-10&,SI20BZP7B40",114,,114,,26,,26,,83,296,"HK1003 -Blackpoint D2 - Rev.0E DD30092021"
1-2647,SI--BZK4-40,"(OTD-OS) ON SITE MV/LV CABLES20/00BZK (LOT 2)",5121,"HK1003-Rev.0E-3",TT_FinMile,"55902",-,-,-,0,TK_NotStart,25/10/2022,,25/10/2022,,"SI--BZK4-25 FS,SI20BZK4-48 FS","SI--BZK4-25,SI20BZK4-48","SI20BZK7F26 FS,SI20BZK7C25 FS,SI20BZK7-28 FS,SI20BZK7F25 FS,SI20BZK7A36 FS,SI20CFE7A25 FS,SI20BZK7B46 FS,SI20BZK7B42 FS,SI20BZK7B41 FS,SI20BZK7B24 FS,SI20BZK7B32 FS,SI20BZK7D25 FS,SI20BZK7A35 FS,SI20BZK7L25 FS,SI20BZK7A34 FS,SI20UBA7-105 FS,SI20BZK7E26 FS,SI20BZK7B48 FS,SI20BZK7A28 FS,SI20BZK7F29 FS,SI20BZK7B47 FS,SI20BZK7-190 FS,SI20BZK7A37 FS,SI20BZK7E27 FS,SI20BZK7-200 FS,SI20BZK7B27 FS","SI20BZK7F26,SI20BZK7C25,SI20BZK7-28,SI20BZK7F25,SI20BZK7A36,SI20CFE7A25,SI20BZK7B46,SI20BZK7B42,SI20BZK7B41,SI20BZK7B24,SI20BZK7B32,SI20BZK7D25,SI20BZK7A35,SI20BZK7L25,SI20BZK7A34,SI20UBA7-105,SI20BZK7E26,SI20BZK7B48,SI20BZK7A28,SI20BZK7F29,SI20BZK7B47,SI20BZK7-190,SI20BZK7A37,SI20BZK7E27,SI20BZK7-200,SI20BZK7B27",116,,116,,27,,27,,84,64,"HK1003 -Blackpoint D2 - Rev.0E DD30092021"
1-2648,SI--BZK2-89,"CONTRACT INTO FORCE MV/LV CABLES BZK (LOT2) xx",5121,"HK1003-Rev.0E-3",TT_Mile,"55902",-,-,-,0,TK_NotStart,16/02/2022,,16/02/2022,,"SI--BZK2-87 FS,SI--BZK2-85 SS","SI--BZK2-87,SI--BZK2-85","SI--BZK3-25 FS,SI--BZK2-97 SS","SI--BZK3-25,SI--BZK2-97",80,,80,,18,,18,,50,64,"HK1003 -Blackpoint D2 - Rev.0E DD30092021"
1-2649,SI20BA-8-11,"(TOP-20BA) ISOLATED GENERATOR BUSDUCT BAA INCL. BAB, BAC",5121,"HK1003-Rev.0E-3",TT_FinMile,"55902",-,-,-,0,TK_NotStart,27/02/2023,,27/02/2023,,"SI20BAA7-66 FS,SI20BAC7-16 FS,SI20BZK7A28 FS,SI20BAA7-56 FS","SI20BAA7-66,SI20BAC7-16,SI20BZK7A28,SI20BAA7-56","SI20BAC8-26 FS","SI20BAC8-26",134,,134,,31,,31,,92,128,"HK1003 -Blackpoint D2 - Rev.0E DD30092021"
1-2650,SI20BAA7-66,"ERECTION IPB PART 2 - 20BAC TO 20MKA",5121,"HK1003-Rev.0E-3",TT_Task,"55902",-,-,-,0,TK_NotStart,26/10/2022,,03/01/2023,,"SI20MKA7-42 FS,SI20BAA7-15 FS,SI20BAA4-40 FS,SI20UBL5C-45 FS,SI20BAC7-16 FS,SI20MKA6-14 FS,SI20MKA6-14 SS","SI20MKA7-42,SI20BAA7-15,SI20BAA4-40,SI20UBL5C-45,SI20BAC7-16,SI20MKA6-14,SI20MKA6-14","SI20BA-8-11 FS,SI20BAA7-65 FS","SI20BA-8-11,SI20BAA7-65",116,,126,,27,,29,,84,432,"HK1003 -Blackpoint D2 - Rev.0E DD30092021"
1-2651,SI20BAC8-26,"COMMISSIONING CIRCUIT BREAKER/ ISOLATED GEN BUSDUCT",5121,"HK1003-Rev.0E-3",TT_Task,"55902",-,-,-,0,TK_NotStart,07/03/2023,,13/03/2023,,"SI20BFA8-25 FS,SI20BA-8-11 FS,SI-PM-40 FS,SI20BAT8-25 FS","SI20BFA8-25,SI20BA-8-11,SI-PM-40,SI20BAT8-25","SI20MKC8-76 FS,SI20CH-8A25 FS","SI20MKC8-76,SI20CH-8A25",135,,136,,31,,31,,92,128,"HK1003 -Blackpoint D2 - Rev.0E DD30092021"
1-2652,SI--BZK4-10,"LOGISTICS AND CUSTOMS PREPARATION MV/LV CABLE 20/00BZK (LOT2)",5121,"HK1003-Rev.0E-3",TT_Task,"55902",-,-,-,0,TK_NotStart,03/08/2022,,30/08/2022,,"SI--BZK3-70 FS","SI--BZK3-70","SI--BZK3-80 FS","SI--BZK3-80",104,,108,,24,,25,,76,64,"HK1003 -Blackpoint D2 - Rev.0E DD30092021"
1-2653,SI--BZK3-70,"TIMES OF COMPLETION (FINAL DATA IN KANLOG) MV/LV CABLE 20/00BZK (LOT2)",5121,"HK1003-Rev.0E-3",TT_FinMile,"55902",-,-,-,0,TK_NotStart,02/08/2022,,02/08/2022,,"SI--BZK3-25 FS","SI--BZK3-25","SI--BZK4-10 FS","SI--BZK4-10",104,,104,,24,,24,,76,64,"HK1003 -Blackpoint D2 - Rev.0E DD30092021"
1-2654,SI--BZK3-25,"MANUFACTURING / SHOP TEST MV/LV CABLE 20/00BZK (LOT2)",5121,"HK1003-Rev.0E-3",TT_Task,"55902",-,-,-,0,TK_NotStart,16/02/2022,,02/08/2022,,"SI--BZK2-89 FS,SI--C--2-85 FS,SI--2222-30 FS","SI--BZK2-89,SI--C--2-85,SI--2222-30","SI--BZK3-70 FS","SI--BZK3-70",80,,104,,18,,24,,50,64,"HK1003 -Blackpoint D2 - Rev.0E DD30092021"
1-2655,SI--BZK3-80,"(RFS) READY FOR SHIPMENT MV/LV CABLE 20/00BZK (LOT2)",5121,"HK1003-Rev.0E-3",TT_FinMile,"55902",-,-,-,0,TK_NotStart,30/08/2022,,30/08/2022,,"SI--BZK4-10 FS","SI--BZK4-10","SI--BZK4-25 FS","SI--BZK4-25",108,,108,,25,,25,,79,64,"HK1003 -Blackpoint D2 - Rev.0E DD30092021"
1-2656,SI--BZK4-25,"TRANSPORT MV/LV CABLE 20/00BZK (LOT2)",5121,"HK1003-Rev.0E-3",TT_Task,"55902",-,-,-,0,TK_NotStart,31/08/2022,,25/10/2022,,"SI--BZK3-80 FS","SI--BZK3-80","SI--BZK4-40 FS","SI--BZK4-40",108,,116,,25,,27,,80,64,"HK1003 -Blackpoint D2 - Rev.0E DD30092021"
1-2657,SI--B--2-66,"BASIC DESIGN CABLE - OVERALL CABLE ROUTING DWG YD16 - FIRST SUBMISSION",5121,"HK1003-Rev.0E-3",TT_Task,"55902",-,-,-,100,TK_Complete,20/03/2021,20/03/2021,02/04/2021,02/04/2021,"SI--B--2-92 FS","SI--B--2-92","SI--B--2-30 FS,SI20UBY2-5 FS,SI20UBY2-41 FS,SI20UBY2-49 FS,SI20UBY2-57 FS,SI--B--2-30 FF,SI--B--2-94 FS","SI--B--2-30,SI20UBY2-5,SI20UBY2-41,SI20UBY2-49,SI20UBY2-57,SI--B--2-30,SI--B--2-94",33,33,34,34,7,7,8,8,6,,"HK1003 -Blackpoint D2 - Rev.0E DD30092021"
1-2658,SI--EK-2-20,"(DF) BASIC DESIGN GAS FINAL FILTER/ PREHEATER 20EKG",5121,"HK1003-Rev.0E-3",TT_FinMile,"55902",-,-,-,100,TK_Complete,25/03/2021,25/03/2021,25/03/2021,25/03/2021,"SI--EK-2-75 FS","SI--EK-2-75","SI--EK-2-80 FS","SI--EK-2-80",33,33,33,33,7,7,7,7,6,,"HK1003 -Blackpoint D2 - Rev.0E DD30092021"
1-2659,SI--PAD2-20,"(DF) BASIC DESIGN COOLING TOWER EQUIPMENT PAD (GFK)",5121,"HK1003-Rev.0E-3",TT_FinMile,"55902",-,-,-,100,TK_Complete,19/12/2020,19/12/2020,19/12/2020,19/12/2020,"SI--PAD2-75 FS","SI--PAD2-75","SI--PAD2-80 FS","SI--PAD2-80",20,20,20,20,4,4,4,4,1,,"HK1003 -Blackpoint D2 - Rev.0E DD30092021"
1-2660,SI20SGY8A26,"COLD COMMISSIONING FIRE DETECTION SYSTEM INSIDE 20UMC SGY",5121,"HK1003-Rev.0E-3",TT_Task,"55902",-,-,-,0,TK_NotStart,16/06/2023,,22/06/2023,,"SI20SGY8A25 FS,SI-PM-40 FS,SI20TPI22A8-30 FS,SI-P222-66 FS,SI-P222-67 FS,SI-P222-76 FS,SI-P222-75 FS,SI-P222-74 FS,SI-P222-73 FS,SI-P222-72 FS,SI-P222-70 FS,SI20MBA8-25 SS","SI20SGY8A25,SI-PM-40,SI20TPI22A8-30,SI-P222-66,SI-P222-67,SI-P222-76,SI-P222-75,SI-P222-74,SI-P222-73,SI-P222-72,SI-P222-70,SI20MBA8-25","SI20MB-9-05 FS","SI20MB-9-05",149,,150,,34,,35,,98,8,"HK1003 -Blackpoint D2 - Rev.0E DD30092021"
1-2661,SI20SGY8A25,"(TOP-20SGY) FIRE DETECTION SYSTEM - MAIN ALARM PANEL",5121,"HK1003-Rev.0E-3",TT_FinMile,"55902",-,-,-,0,TK_NotStart,15/06/2023,,15/06/2023,,"SI20SGY4A40 FS,SI--SGY2-05 FS,SI20SGA6-15 FS","SI20SGY4A40,SI--SGY2-05,SI20SGA6-15","SI20SGY8A26 FS","SI20SGY8A26",149,,149,,34,,34,,98,8,"HK1003 -Blackpoint D2 - Rev.0E DD30092021"
1-2662,SI-----1-05,"(NTP) NOTICE TO PROCEED",5121,"HK1003-Rev.0E-3",TT_Mile,"55902",-,-,-,100,TK_Complete,15/01/2021,15/01/2021,15/01/2021,15/01/2021,"","","SI--C--2-85 SS,SI--C--2-10 FS,SI20TP-230& FS,SI--PM-2-90 FS,SI--PM-2-60 FS,SI--PM-2-30 FS,SI-----2E85 SS,SI--HA-2-85 FS,SI-----1-04 SS,SP20MB-3-25 FS,SP--MKA2-86 SS,SP20MA-2-81 SS,SI--9998-21& SS,SI--9998-22& SS,SI--9998-20& SS,SI-----8-07& SS,SI--3335-62 SS,SI-----1-01 SS,SI-----5-10 SS,SP20MA-3-25 FS,SI--HA-3E25 FS,SI--HA-3E27 FS,SI20BAT2-15 FS,SI--EK-2-77 FS,SI--EK-2-75 FS,SI--B--2-55 FS,SI--C--2-80 FS,SP20MBL2-85 FS,SI--BAC2-15 FS,SI--BFT2-15 FS,SI--BAA2-15 FS,SI20PAA2-77 FS,SI20MBR2B64 FS,SI20TP-140& FS,SP--MB-2-85 FS,SI--ZTA2A00 FS,SP--MKC2-75 FS,SP20MA-3-83 FS,SI20XKA2-15 FS,SI--LAC2B85 FS,SI--BAW2-14 FS,SI20SMG2-87 FS,SP20MA2B42 FS,SI20PUR2J75 FS,SI--BZP2-50 FS,SI--PAD2-89 FS,SI--5552-60 FS,SI--3332-27 FS,SI--B--2-14 FS,SI--B--2-44 FS,SI--CYA2-15 FS,SI20ACA2-5 FS,SI--C--3E86 FS,SI--HA-2-99 FS,SI--2222-30 FS,SI--2222-31 FS,SI--2222-32 FS,SI--3331-36 FS,SP--SGJ2-10 FS,SP--MBK2-80 FS,SP20MBL2-80 FS,SP--MKA2B41 FS,SI20UGX8-45 FS,SI--PDB2B75 FS,SI20PAS2A91 FS,SI--B--2-03 FS,SI--SA-2-01 FS,SI--HB-2A40 FS,SI--UHA2-40 FS,SI20TP-105& FS,SI20TP-115& FS,SI20TP-120& FS,SI20TP-130& FS,SI20TP-133& FS,SI20TP-259& FS,SI20SD-110& FS,SI20SD-120& FS,SI--PAC2B80 FS,SI--LAC2B80 FS,SI20LCA2B87 FS,SI--LCA2B75 FS,SI--UMC2A60 FS,SI20SD-121& FS,SI20SD-122& FS,SI--PAB2-15 FS,SI--GM-2B75 FS,SI20LBG2C75 FS,SI20PGB2D86 FS,SI--PGB2D75 FS,SI20QC-2-05 FS,CLP20UMX2-77 FS,SI--SG-2-15 FS,SI--5552-86 FS,SI-UZA2-5 FS,SI20PGB2C86 FS,SI-----2M30 FS,SI-----2M18 FS,SI-----3M61 FS,SI--PAD2-85 FS,SI20LCL2B85 FS,SI20UHA2B-7 FS,SI20MBA2D75 FS,SI20SCA2-85 FS,SI20SCA2-75 FS,SI--SMM2-85 FS,SI20ULY2-5 FS,SI20HS-2-87 FS,SI20HSJ3-81 FS,SI20HSJ2-94 FS,SI20UEY2-35 FS,SI--6662-26 FS,SI--LDK2B75 FS,SI--SG-2-90 FS,SI--SG-2-22 FS,SI--UEN2-40 FS,SI--UE2-86 FS,SI--UMC2A02 FS,SI20UEY2B02 FS,SI20URD2B02 FS,SI20URA2B02 FS,SI20URA2B4 FS,SI20UPY2-02 FS,SI20UMC2B02 FS,SI20ULA2B01 FS,SI20UHW2B01 FS,SI20UHA2B01 FS,SI20UVM2B01 FS,SI20UMY2B01 FS,SI20UBF2B01 FS,SI20UBA2B01 FS,SI20UEN2B01 FS,SI20UBX2B01 FS,SI20TP-131& FS,SI20TP-167& FS,SI20TP-168& FS,SI20TP-183& FS,SI20TP-185& FS,SI20TP-186& FS,SI20TP-187& FS,SI20TP-201& FS,SI20SD-120& SS,SI20SD-122& SS,SI20TP-140& SS,SI20TP-166& FS,SI20TP-105& SS,SI20TP-115& SS,SI20TP-120& SS,SI20TP-122& FS,SI20TP-129& FS,SI20TP-130& SS,SI20SD-121& SS,SI20SD-110& SS,SI20TP-133& SS,SI20TP-135& FS,SI20TP-259& SS,SI20TP-131& SS,SI20TP-230& SS,SI20TP-116& FS,SI20TP-118& FS,SI20TP-190& FS,SI20TP-193& FS,SI-P221-568& FS,SI-P221-569& FS,SI-P221-579& FS,SI-PM-10 FS,SI-P222-65 FS,SI--UMC2Y70 FS,SI20HA-4D20 FS,SI-P222-63 FS,SI-P222-64 FS,SI-P222-79 FS,SI-P222-83 FS,SI-P222-100 FS,SI-P222-101 FS,SI-P222-102 FS,SI-P222-103 FS,SI-P222-104 FS,SI-P222-120 FS,SI-P222-105 FS,SI-P222-121 FS,SI-P222-124 FS,SI-P222-125 FS,SI-P222-108 FS,SI-P222-116 FS,SI-P222-109 FS,SI-P222-117 FS,SI-P222-106 FS,SI-P222-122 FS,SI-P222-123 FS,SI-P222-126 FS,SI-P222-107 FS,SI-P222-114 FS,SI-P222-110 FS,SI-P222-118 FS,SI-P222-115 FS,SI-P222-111 FS,SI-P222-119 FS,SI-P222-128 FS,SI-P222-133 FS,SI-P222-134 FS,SI-P222-136 FS,SI-P222-137 FS,SI-P222-138 FS,SI-P222-139 FS,SI-P222-140 FS,SI-P222-142 FS,SI-P222-143 FS,SI-P222-144 FS,SI-P222-141 FS,SI-P222-145 FS,SI--GM-2B86 FS,SI--ZTA2-85 FS,SI-----5-22 FS,SI--LDK2B05 FS,SI20LCL2B75 FS,SI20SCA2-86 FS,SI--SMM2-75 FS,SI20LBG2C86 FS,SI20MBV2-77 FS,SI--SG-2-102 FS,SI--SG-2-103 FS,SI--HA-2-90 FS,SI--2222-70 FS,SI--5552-93 FS,SI--5552-87 FS,SI--5552-101 FS,SI20UZx-42 FS,SI--C--2-40 FS,SI--LCB2B75 FS,SI20BAB2-1 FS,SI--9998-23& FS,SI20TP-180& FS,SI20TP-260& FS,SI-P222-130 FS,SI20UHA2B-5 FS,SI20BFA8-36 FS,SI20UCA7-16 FS,SI-P222-127 FS,SI-P222-80 FS,SP20MBL2-99& FS,CL20-TPE-10 FS,SP20MAJ2-80 FS,SI20BZP7B40 FS,SP--B--2-58 FS,SP20MBR2A80 FS,SI--BZL2-15 FS,SI20TPM1A2-5 FS,SI20TPM1B2-5 FS,SI--2222-60 FS,SI--2222-63 FS,SI--LOG2-20 FS,SI--LOG2-10 FS,SI20QJ-2-17 FS,SI20TPM2C2-5 FS,SI20TPM4A2-5 FS,SI20TPM5A2-5 FS,SI20TPM5B2-5 FS,SI20TPM6A2-5 FS,SI20TPM6B2-5 FS,SI20TPM7A2-5 FS,SI20TPM7B2-5 FS,SI20TPM8A2-5 FS,SI20TPM9B2-5 FS,SI20TPM10A2-5 FS,SI20TPM13A2-5 FS,SI20TPM13B2-5 FS,SI20TPM14A2-5 FS,SI20TPM14B2-5 FS,SI20TPM15A2-5 FS,SI20TPM16A2-5 FS,SI20TPM17A2-5 FS,SI20TPM18A2-5 FS,SI20TPM19A2-5 FS,SI20TPM20A2-5 FS,SI20TPM21A2-5 FS,SI20TPM22A2-5 FS,SI20TPM23A2-5 FS,SI20TPM24A2-5 FS,SI20TPM28A2-5 FS,SI20TPM29A2-5 FS,SI20TPF1A2-5 FS,SI20TPF1C2-5 FS,SI20TPF2A2-5 FS,SI20TPM9A2-5 FS,SI20TPF1B2-5 FS,SI20TPC1A2-5 FS,SI20TPI12A2-5 FS,SI20TPI13A2-5 FS,SI20TPI1A2-5 FS,SI20TPI4A2-5 FS,SI20TPI5A2-5 FS,SI20TPI6A2-5 FS,SI20TPI10A2-5 FS,SI20TPI17A2-5 FS,SI20TPI19I2-5 FS,SI20TPI19II2-5 FS,SI20TPI21A2-5 FS,SI20TPI22A2-5 FS,SI20TPI23A2-5 FS,SI20TPI15A2-5 FS,SI20TPI16A2-5 FS,SI20TPI20A2-5 FS,SI20TPI3A2-5 FS,SI20TPI18A2-5 FS,SI20TPI2I2-5 FS,SI20TPI2II2-5 FS,SI20TPI2III2-5 FS,SI20TPI2IV2-5 FS,SI20TPE4A2-5 FS,SI20TPE5A2-5 FS,SI20TPM25A2-5 FS,SI20TPM26A2-5 FS,SI20TPC2A2-5 FS,SI20TPC3A2-5 FS,SI20TPC4A2-5 FS,SI20TPC5A2-5 FS,SI20TPC6A2-5 FS,SI20TPC7A2-5 FS,SI20TPC8A2-5 FS,SI20TPC9A2-5 FS,SI20TPC10A2-5 FS,SI20TPE3A2-5 FS,SI20TPE2A2-5 FS,SI20TPE6A2-5 FS,SI20TPE6II2-5 FS,SI--U--2-87 FS,SI--UM-2-40 FS,SI20TP-169& FS,SI20TP-184& FS,SI20TP-191& FS,SI20TP-192& FS,SI20TP-170& FS,SI20TP-171& FS,SI20TP-173& FS,SI20TP-172& FS,SI20TP-206& FS,SI20TP-207& FS,SI20TP-204& FS,SI20TP-203& FS,SI20TP-202& FS,SI20TP-205& FS,SI20TP-208& FS,SI20TP-209& FS,SI20TP-210& FS,SI20TP-231& FS,SI20TP-232& FS,SI20TP-233& FS,SI20TP-234& FS,SI20TP-235& FS,SI20TP-236& FS,SI20TP-238& FS,SI20TP-239& FS,SI20TP-240& FS,SI20TP-241& FS,SI20TP-242& FS,SI20TP-243& FS,SI20TP-244& FS,SI20TP-245& FS,SI20TP-246& FS,SI20TP-247& FS,SI20TP-248& FS,SI20TP-249& FS,SI20TP-250& FS,SI20TP-251& FS,SI20TP-237& FS,SI20TP-267& FS,SI20TP-263& FS,SI20TP-261& FS,SI20TP-258& FS,SI20TP-265& FS,SI20TP-266& FS,SI20TP-262& FS,SI20UMC5A45& FS,SI20--P6A00& FS,SI20MB-6-00& FS,SI20MB-6-10& FS,SI20MA-8-25& FS,SI20HA-2-85& FS,SI-P221-15& FS,SI-P221-25& FS,SI-P221-295& FS,SI-P221-260& FS,SI-P221-245& FS,SI-P221-365& FS,SI-P221-5& FS,SI-P221-100& FS,SI-P221-60& FS,SI-P221-70& FS,SI-P221-115& FS,SI-P221-305& FS,SI-P221-145& FS,SI-P221-125& FS,SI-P221-90& FS,SI-P221-170& FS,SI-P221-390& FS,SI-P221-375& FS,SI-P221-395& FS,SI-P221-20& FS,SI-P221-10& FS,SI-P221-475& FS,SI-P221-500& FS,SI-P221-45& FS,SI-P221-210& FS,SI-P221-180& FS,SI-P221-40& FS,SI-P221-85& FS,SI-P221-140& FS,SI-P221-240& FS,SI-P221-320& FS,SI-P221-185& FS,SI-P221-230& FS,SI-P221-50& FS,SI-P221-340& FS,SI-P221-345& FS,SI-P221-205& FS,SI-P221-190& FS,SI-P221-235& FS,SI-P221-330& FS,SI-P221-460& FS,SI-P221-445& FS,SI-P221-530& FS,SI-P221-560& FS,SI-P221-600& FS,SI-P221-545& FS,SI-P221-540& FS,SI-P221-510& FS,SI-P221-175& FS,SI-P221-480& FS,SI-P221-535& FS,SI-P221-555& FS,SI-P221-495& FS,SI-P221-505& FS,SI-P221-550& FS,SI-P221-515& FS,SI-P221-520& FS,SI-P221-572& FS,SI-P221-570& FS,SI-P221-571& FS,SI-P221-573& FS,SI-P221-575& FS,SI-P221-576& FS,SI-P221-578& FS,SI-P221-574& FS,SI-P221-485& FS,SI---2S6-05& FS,SI---3S6-05& FS,SI20SA-6-20& FS,CLP20UEZ5-80 FS,SI20PUR2J86 FS,SI-P221-430 FS,SI-P221-440 FS,SI-P222-147 FS,SI--2222-143& FS,SI--2222-142& FS,SI-P221-211& FS,SI-P222-162 FS,CL-3335-80 FS,SI-P222-135 SS,SI20TP-100& FS,SI-----5-20 FS,SI--M--2D21 FS,SI20--2-30& FS,SI20--2-35& FS,SI20--2-40& FS,SI20--2-45& FS,SI-----2E66 FS,SI-----2F71 FS,SI--SG-2-21 FS,SI--B--2-04 FS,SI--3332-17 FS,SI--2222-10 FS,SI--PAC2B86 FS,SI20PGB2B86 FS,SI-P221-470& FS,SI-P221-400& FS,SI-P221-250& FS,SI-P221-370& FS,SI-P221-405& FS,SI-P221-415& FS,SI-P221-150& FS,SI-P221-450& FS,SI-P221-440& FS,SI-P221-385& FS,SI-P221-275& FS,SI-P221-80& FS,SI-P221-165& FS,SI-P221-135& FS,SI-P221-225& FS,SI-P221-280& FS,SI-P221-290& FS,SI-P221-35& FS,SI-P221-315& FS,SI-P221-200& FS,SI-P221-195& FS,SI--3331-30 FS,SI-P221-365&1 FS,SI-P221-365&2 FS,SI-P221-365&3 FS,SI-P221-365&5 FS,SI-P221-365&7 FS,SI-P221-365&8 FS,SI--9998-105 FS,SI--9998-100 FS,SI--P--2-30 FS,SI--GHC6-10 FS,SI-----8-7 FS,SI-----8-8& FS","SI--C--2-85,SI--C--2-10,SI20TP-230&,SI--PM-2-90,SI--PM-2-60,SI--PM-2-30,SI-----2E85,SI--HA-2-85,SI-----1-04,SP20MB-3-25,SP--MKA2-86,SP20MA-2-81,SI--9998-21&,SI--9998-22&,SI--9998-20&,SI-----8-07&,SI--3335-62,SI-----1-01,SI-----5-10,SP20MA-3-25,SI--HA-3E25,SI--HA-3E27,SI20BAT2-15,SI--EK-2-77,SI--EK-2-75,SI--B--2-55,SI--C--2-80,SP20MBL2-85,SI--BAC2-15,SI--BFT2-15,SI--BAA2-15,SI20PAA2-77,SI20MBR2B64,SI20TP-140&,SP--MB-2-85,SI--ZTA2A00,SP--MKC2-75,SP20MA-3-83,SI20XKA2-15,SI--LAC2B85,SI--BAW2-14,SI20SMG2-87,SP20MA2B42,SI20PUR2J75,SI--BZP2-50,SI--PAD2-89,SI--5552-60,SI--3332-27,SI--B--2-14,SI--B--2-44,SI--CYA2-15,SI20ACA2-5,SI--C--3E86,SI--HA-2-99,SI--2222-30,SI--2222-31,SI--2222-32,SI--3331-36,SP--SGJ2-10,SP--MBK2-80,SP20MBL2-80,SP--MKA2B41,SI20UGX8-45,SI--PDB2B75,SI20PAS2A91,SI--B--2-03,SI--SA-2-01,SI--HB-2A40,SI--UHA2-40,SI20TP-105&,SI20TP-115&,SI20TP-120&,SI20TP-130&,SI20TP-133&,SI20TP-259&,SI20SD-110&,SI20SD-120&,SI--PAC2B80,SI--LAC2B80,SI20LCA2B87,SI--LCA2B75,SI--UMC2A60,SI20SD-121&,SI20SD-122&,SI--PAB2-15,SI--GM-2B75,SI20LBG2C75,SI20PGB2D86,SI--PGB2D75,SI20QC-2-05,CLP20UMX2-77,SI--SG-2-15,SI--5552-86,SI-UZA2-5,SI20PGB2C86,SI-----2M30,SI-----2M18,SI-----3M61,SI--PAD2-85,SI20LCL2B85,SI20UHA2B-7,SI20MBA2D75,SI20SCA2-85,SI20SCA2-75,SI--SMM2-85,SI20ULY2-5,SI20HS-2-87,SI20HSJ3-81,SI20HSJ2-94,SI20UEY2-35,SI--6662-26,SI--LDK2B75,SI--SG-2-90,SI--SG-2-22,SI--UEN2-40,SI--UE2-86,SI--UMC2A02,SI20UEY2B02,SI20URD2B02,SI20URA2B02,SI20URA2B4,SI20UPY2-02,SI20UMC2B02,SI20ULA2B01,SI20UHW2B01,SI20UHA2B01,SI20UVM2B01,SI20UMY2B01,SI20UBF2B01,SI20UBA2B01,SI20UEN2B01,SI20UBX2B01,SI20TP-131&,SI20TP-167&,SI20TP-168&,SI20TP-183&,SI20TP-185&,SI20TP-186&,SI20TP-187&,SI20TP-201&,SI20SD-120&,SI20SD-122&,SI20TP-140&,SI20TP-166&,SI20TP-105&,SI20TP-115&,SI20TP-120&,SI20TP-122&,SI20TP-129&,SI20TP-130&,SI20SD-121&,SI20SD-110&,SI20TP-133&,SI20TP-135&,SI20TP-259&,SI20TP-131&,SI20TP-230&,SI20TP-116&,SI20TP-118&,SI20TP-190&,SI20TP-193&,SI-P221-568&,SI-P221-569&,SI-P221-579&,SI-PM-10,SI-P222-65,SI--UMC2Y70,SI20HA-4D20,SI-P222-63,SI-P222-64,SI-P222-79,SI-P222-83,SI-P222-100,SI-P222-101,SI-P222-102,SI-P222-103,SI-P222-104,SI-P222-120,SI-P222-105,SI-P222-121,SI-P222-124,SI-P222-125,SI-P222-108,SI-P222-116,SI-P222-109,SI-P222-117,SI-P222-106,SI-P222-122,SI-P222-123,SI-P222-126,SI-P222-107,SI-P222-114,SI-P222-110,SI-P222-118,SI-P222-115,SI-P222-111,SI-P222-119,SI-P222-128,SI-P222-133,SI-P222-134,SI-P222-136,SI-P222-137,SI-P222-138,SI-P222-139,SI-P222-140,SI-P222-142,SI-P222-143,SI-P222-144,SI-P222-141,SI-P222-145,SI--GM-2B86,SI--ZTA2-85,SI-----5-22,SI--LDK2B05,SI20LCL2B75,SI20SCA2-86,SI--SMM2-75,SI20LBG2C86,SI20MBV2-77,SI--SG-2-102,SI--SG-2-103,SI--HA-2-90,SI--2222-70,SI--5552-93,SI--5552-87,SI--5552-101,SI20UZx-42,SI--C--2-40,SI--LCB2B75,SI20BAB2-1,SI--9998-23&,SI20TP-180&,SI20TP-260&,SI-P222-130,SI20UHA2B-5,SI20BFA8-36,SI20UCA7-16,SI-P222-127,SI-P222-80,SP20MBL2-99&,CL20-TPE-10,SP20MAJ2-80,SI20BZP7B40,SP--B--2-58,SP20MBR2A80,SI--BZL2-15,SI20TPM1A2-5,SI20TPM1B2-5,SI--2222-60,SI--2222-63,SI--LOG2-20,SI--LOG2-10,SI20QJ-2-17,SI20TPM2C2-5,SI20TPM4A2-5,SI20TPM5A2-5,SI20TPM5B2-5,SI20TPM6A2-5,SI20TPM6B2-5,SI20TPM7A2-5,SI20TPM7B2-5,SI20TPM8A2-5,SI20TPM9B2-5,SI20TPM10A2-5,SI20TPM13A2-5,SI20TPM13B2-5,SI20TPM14A2-5,SI20TPM14B2-5,SI20TPM15A2-5,SI20TPM16A2-5,SI20TPM17A2-5,SI20TPM18A2-5,SI20TPM19A2-5,SI20TPM20A2-5,SI20TPM21A2-5,SI20TPM22A2-5,SI20TPM23A2-5,SI20TPM24A2-5,SI20TPM28A2-5,SI20TPM29A2-5,SI20TPF1A2-5,SI20TPF1C2-5,SI20TPF2A2-5,SI20TPM9A2-5,SI20TPF1B2-5,SI20TPC1A2-5,SI20TPI12A2-5,SI20TPI13A2-5,SI20TPI1A2-5,SI20TPI4A2-5,SI20TPI5A2-5,SI20TPI6A2-5,SI20TPI10A2-5,SI20TPI17A2-5,SI20TPI19I2-5,SI20TPI19II2-5,SI20TPI21A2-5,SI20TPI22A2-5,SI20TPI23A2-5,SI20TPI15A2-5,SI20TPI16A2-5,SI20TPI20A2-5,SI20TPI3A2-5,SI20TPI18A2-5,SI20TPI2I2-5,SI20TPI2II2-5,SI20TPI2III2-5,SI20TPI2IV2-5,SI20TPE4A2-5,SI20TPE5A2-5,SI20TPM25A2-5,SI20TPM26A2-5,SI20TPC2A2-5,SI20TPC3A2-5,SI20TPC4A2-5,SI20TPC5A2-5,SI20TPC6A2-5,SI20TPC7A2-5,SI20TPC8A2-5,SI20TPC9A2-5,SI20TPC10A2-5,SI20TPE3A2-5,SI20TPE2A2-5,SI20TPE6A2-5,SI20TPE6II2-5,SI--U--2-87,SI--UM-2-40,SI20TP-169&,SI20TP-184&,SI20TP-191&,SI20TP-192&,SI20TP-170&,SI20TP-171&,SI20TP-173&,SI20TP-172&,SI20TP-206&,SI20TP-207&,SI20TP-204&,SI20TP-203&,SI20TP-202&,SI20TP-205&,SI20TP-208&,SI20TP-209&,SI20TP-210&,SI20TP-231&,SI20TP-232&,SI20TP-233&,SI20TP-234&,SI20TP-235&,SI20TP-236&,SI20TP-238&,SI20TP-239&,SI20TP-240&,SI20TP-241&,SI20TP-242&,SI20TP-243&,SI20TP-244&,SI20TP-245&,SI20TP-246&,SI20TP-247&,SI20TP-248&,SI20TP-249&,SI20TP-250&,SI20TP-251&,SI20TP-237&,SI20TP-267&,SI20TP-263&,SI20TP-261&,SI20TP-258&,SI20TP-265&,SI20TP-266&,SI20TP-262&,SI20UMC5A45&,SI20--P6A00&,SI20MB-6-00&,SI20MB-6-10&,SI20MA-8-25&,SI20HA-2-85&,SI-P221-15&,SI-P221-25&,SI-P221-295&,SI-P221-260&,SI-P221-245&,SI-P221-365&,SI-P221-5&,SI-P221-100&,SI-P221-60&,SI-P221-70&,SI-P221-115&,SI-P221-305&,SI-P221-145&,SI-P221-125&,SI-P221-90&,SI-P221-170&,SI-P221-390&,SI-P221-375&,SI-P221-395&,SI-P221-20&,SI-P221-10&,SI-P221-475&,SI-P221-500&,SI-P221-45&,SI-P221-210&,SI-P221-180&,SI-P221-40&,SI-P221-85&,SI-P221-140&,SI-P221-240&,SI-P221-320&,SI-P221-185&,SI-P221-230&,SI-P221-50&,SI-P221-340&,SI-P221-345&,SI-P221-205&,SI-P221-190&,SI-P221-235&,SI-P221-330&,SI-P221-460&,SI-P221-445&,SI-P221-530&,SI-P221-560&,SI-P221-600&,SI-P221-545&,SI-P221-540&,SI-P221-510&,SI-P221-175&,SI-P221-480&,SI-P221-535&,SI-P221-555&,SI-P221-495&,SI-P221-505&,SI-P221-550&,SI-P221-515&,SI-P221-520&,SI-P221-572&,SI-P221-570&,SI-P221-571&,SI-P221-573&,SI-P221-575&,SI-P221-576&,SI-P221-578&,SI-P221-574&,SI-P221-485&,SI---2S6-05&,SI---3S6-05&,SI20SA-6-20&,CLP20UEZ5-80,SI20PUR2J86,SI-P221-430,SI-P221-440,SI-P222-147,SI--2222-143&,SI--2222-142&,SI-P221-211&,SI-P222-162,CL-3335-80,SI-P222-135,SI20TP-100&,SI-----5-20,SI--M--2D21,SI20--2-30&,SI20--2-35&,SI20--2-40&,SI20--2-45&,SI-----2E66,SI-----2F71,SI--SG-2-21,SI--B--2-04,SI--3332-17,SI--2222-10,SI--PAC2B86,SI20PGB2B86,SI-P221-470&,SI-P221-400&,SI-P221-250&,SI-P221-370&,SI-P221-405&,SI-P221-415&,SI-P221-150&,SI-P221-450&,SI-P221-440&,SI-P221-385&,SI-P221-275&,SI-P221-80&,SI-P221-165&,SI-P221-135&,SI-P221-225&,SI-P221-280&,SI-P221-290&,SI-P221-35&,SI-P221-315&,SI-P221-200&,SI-P221-195&,SI--3331-30,SI-P221-365&1,SI-P221-365&2,SI-P221-365&3,SI-P221-365&5,SI-P221-365&7,SI-P221-365&8,SI--9998-105,SI--9998-100,SI--P--2-30,SI--GHC6-10,SI-----8-7,SI-----8-8&",23,23,23,23,5,5,5,5,2,,"HK1003 -Blackpoint D2 - Rev.0E DD30092021"
1-2663,SI20M--9-75,"COMBINED CYCLE POWER PLANT LOAD TESTS - 2ND & 3RD GAS",5121,"HK1003-Rev.0E-3",TT_Task,"55902",-,-,-,0,TK_NotStart,30/09/2023,,20/10/2023,,"SI20M--9-70 FS,SI20BZL8A27 FS","SI20M--9-70,SI20BZL8A27","SI20M--9-10 FS","SI20M--9-10",165,,167,,38,,39,,99,0,"HK1003 -Blackpoint D2 - Rev.0E DD30092021"
1-2664,SI20L--9I81,"INSTALLATION SCR MODULES IN HRSG",5121,"HK1003-Rev.0E-3",TT_Task,"55902",-,-,-,0,TK_NotStart,10/07/2023,,24/07/2023,,"SI20L--9I80 SS,SI20HSJ6-15 FS,SI20HSJ4-42 FS","SI20L--9I80,SI20HSJ6-15,SI20HSJ4-42","SI20M--9-50 FS,SI20HSK-8B28 FF,SI20CFE8-35 SS","SI20M--9-50,SI20HSK-8B28,SI20CFE8-35",153,,155,,35,,36,,99,0,"HK1003 -Blackpoint D2 - Rev.0E DD30092021"
1-2665,SI20--P6-76,"COLD COMMISSIONING FOR CHEMICAL CLEANING HRSG",5121,"HK1003-Rev.0E-3",TT_Task,"55902",-,-,-,0,TK_NotStart,22/04/2023,,12/05/2023,,"SI20HA-6-70 FF,SI20ZTA6A0 FF,SI20--P6-73 FF,SI-PM-40 FS,SI20B--8-52 FS,SI20B--8-50 FS","SI20HA-6-70,SI20ZTA6A0,SI20--P6-73,SI-PM-40,SI20B--8-52,SI20B--8-50","SI20--P6-75 FS,SI20HA-8-25# SS,SI20HA-8-25# FF","SI20--P6-75,SI20HA-8-25#,SI20HA-8-25#",142,,144,,33,,33,,96,0,"HK1003 -Blackpoint D2 - Rev.0E DD30092021"
1-2666,SI--2222-103,"1 -BD (BUILDING DEPARTMENT) - GBP 1st DRAFT SUBMISSION (INCL. WITHDRAW & RESUBMIT)",5121,"HK1003-Rev.0E-3",TT_Task,"55902",-,-,-,100,TK_Complete,16/01/2021,16/01/2021,15/04/2021,15/04/2021,"SI--2222-102 SS","SI--2222-102","SI--2222-104 FS,SI--SG-2-88 SS","SI--2222-104,SI--SG-2-88",24,24,36,36,5,5,8,8,2,,"HK1003 -Blackpoint D2 - Rev.0E DD30092021"
1-2667,SI--2222-102,"CLIENT - REVIEW - GENERAL BUILDING PLAN",5121,"HK1003-Rev.0E-3",TT_Task,"55902",-,-,-,100,TK_Complete,16/01/2021,16/01/2021,09/02/2021,09/02/2021,"SI--2222-101 FS","SI--2222-101","SI--2222-103 SS","SI--2222-103",24,24,27,27,5,5,6,6,2,,"HK1003 -Blackpoint D2 - Rev.0E DD30092021"
1-2668,SI--2222-101,"GENERAL BUILDING PLAN PREPARATION  - FIRST DRAFT",5121,"HK1003-Rev.0E-3",TT_Task,"55902",-,-,-,100,TK_Complete,31/10/2020,31/10/2020,15/01/2021,15/01/2021,"SI--2222-100 FS","SI--2222-100","SI--2222-102 FS","SI--2222-102",13,13,23,23,3,3,5,5,0,,"HK1003 -Blackpoint D2 - Rev.0E DD30092021"
1-2669,SI--2222-100,"GENERAL BUILDING PLAN (GBP) DOCUMENTS RECEIVED FROM CLIENT",5121,"HK1003-Rev.0E-3",TT_Mile,"55902",-,-,-,100,TK_Complete,31/10/2020,31/10/2020,31/10/2020,31/10/2020,"SI-----1-03 FS","SI-----1-03","SI--2222-101 FS","SI--2222-101",13,13,13,13,3,3,3,3,0,,"HK1003 -Blackpoint D2 - Rev.0E DD30092021"
1-2670,SI--2222-104,"BD - APPROVAL LETTER AWARD FOR GBP",5121,"HK1003-Rev.0E-3",TT_Task,"55902",-,-,-,100,TK_Complete,16/04/2021,16/04/2021,13/05/2021,13/05/2021,"SI--2222-103 FS","SI--2222-103","SI--UHA2-79 FS,SI--ULA2-70 FS,SI--2222-132 FS,SI20URA5-05 FS","SI--UHA2-79,SI--ULA2-70,SI--2222-132,SI20URA5-05",36,36,40,40,8,8,9,9,8,,"HK1003 -Blackpoint D2 - Rev.0E DD30092021"
1-2671,SI--UHA2-79,"BD - SUBMISSION & APPROVAL - DETAIL DESIGN CONCRETE - 20UHA",5121,"HK1003-Rev.0E-3",TT_Task,"55902",-,-,-,100,TK_Complete,02/08/2021,02/08/2021,29/08/2021,30/08/2021,"SI--2222-104 FS,SI--UHA2-80 SS,SI20UHA2B04 FS,SI-P221-75& FS","SI--2222-104,SI--UHA2-80,SI20UHA2B04,SI-P221-75&","SI20UHA5-10 FS,SI20UVM2-80 SS,SI20UHA5-05 FS,SI--UHA2-82 FF,SI20UHW2-45 SS,SI--ULA2-78 SS,SI--UMX2-65 SS,SI--UHA2-83 FS","SI20UHA5-10,SI20UVM2-80,SI20UHA5-05,SI--UHA2-82,SI20UHW2-45,SI--ULA2-78,SI--UMX2-65,SI--UHA2-83",52,52,56,56,12,12,13,13,24,,"HK1003 -Blackpoint D2 - Rev.0E DD30092021"
1-2672,SI--UHA2-80,"CLIENT - REVIEW - HRSG DETAIL DESIGN CONCRETE 20UHA",5121,"HK1003-Rev.0E-3",TT_Task,"55902",-,-,-,100,TK_Complete,30/07/2021,30/07/2021,23/08/2021,23/08/2021,"SI--UHA2-70 FS,SI--UHA2-50 FS","SI--UHA2-70,SI--UHA2-50","SI--UHA2-79 SS,SI--UHA2-75 FS,SI20UVM2-77 SS","SI--UHA2-79,SI--UHA2-75,SI20UVM2-77",51,51,55,55,12,12,12,12,23,,"HK1003 -Blackpoint D2 - Rev.0E DD30092021"
1-2673,SI--UHA2-81,"BD - CONSENT LETTER HRSG DETAIL DESIGN CONCRETE 20UHA-x",5121,"HK1003-Rev.0E-3",TT_Task,"55902",-,-,-,100,TK_Complete,15/06/2021,15/06/2021,26/07/2021,26/07/2021,"SI20UHA2B04 FS","SI20UHA2B04","SI20UHA5-10 FS,SI--UHA2-75 FS,SI20UHA2-75 FS","SI20UHA5-10,SI--UHA2-75,SI20UHA2-75",45,45,51,51,10,10,11,11,17,,"HK1003 -Blackpoint D2 - Rev.0E DD30092021"
1-2674,SI--URA2-76,"BASIC DESIGN COOLING TOWER FOUNDATION 20URA To be used/cancel xx",5121,"HK1003-Rev.0E-3",TT_Task,"55902",-,-,-,100,TK_Complete,02/02/2021,02/02/2021,29/03/2021,29/03/2021,"","","SI--URA2-70 FS,SI--UR-2-35 FS,SI20URA3-16 FS","SI--URA2-70,SI--UR-2-35,SI20URA3-16",26,26,34,34,6,6,8,8,4,,"HK1003 -Blackpoint D2 - Rev.0E DD30092021"
1-2675,SI--URA2-83,"COORDINATION OF TERMINAL POINTS SUBSTRUCTURE-20URA/URD",5121,"HK1003-Rev.0E-3",TT_FinMile,"55902",-,-,-,100,TK_Complete,31/07/2021,31/07/2021,31/07/2021,31/07/2021,"SI20URA2-15 FS,SI20URA2-74 FS","SI20URA2-15,SI20URA2-74","SI--URA2-85 FF","SI--URA2-85",52,52,52,52,12,12,12,12,24,,"HK1003 -Blackpoint D2 - Rev.0E DD30092021"
1-2676,SI--URA2-82,"PREPARATION FOUNDATION GROUNDING DWGS 20URA/URD",5121,"HK1003-Rev.0E-3",TT_Task,"55902",-,-,-,100,TK_Complete,11/06/2021,11/06/2021,24/06/2021,24/06/2021,"SI--URA2-70 FF","SI--URA2-70","SI--URA2-55 FS","SI--URA2-55",44,44,46,46,10,10,10,10,16,,"HK1003 -Blackpoint D2 - Rev.0E DD30092021"
1-2677,SI--URA2-85,"BD - SUBMISSION APPROVAL 2ND ROUND SUBSTRUCTURE-20URA/URD",5121,"HK1003-Rev.0E-3",TT_Task,"55902",-,-,-,100,TK_Complete,14/07/2021,14/07/2021,30/08/2021,30/08/2021,"SI--URA2-99 FS,SI--URA2-83 FF","SI--URA2-99,SI--URA2-83","SI--URA2-103 FS,SI--URA2-105 FS","SI--URA2-103,SI--URA2-105",49,49,56,56,11,11,13,13,21,,"HK1003 -Blackpoint D2 - Rev.0E DD30092021"
1-2678,SI--URA2-84,"CLIENT REVIEW DETAIL DESIGN SUBSTRUCTURE AND CATHODIC PROTECTION-20URA/URD",5121,"HK1003-Rev.0E-3",TT_Task,"55902",-,-,-,100,TK_Complete,26/07/2021,26/07/2021,05/08/2021,05/08/2021,"SI20PUR2J87 FS","SI20PUR2J87","SI--URA2-100 FS","SI--URA2-100",51,51,52,52,11,11,12,12,23,,"HK1003 -Blackpoint D2 - Rev.0E DD30092021"
1-2679,SI--URA2-87,"BD - CONSENT LETTER SUBSTRUCTURE -20URA/URD-x",5121,"HK1003-Rev.0E-3",TT_Task,"55902",-,-,-,100,TK_Complete,15/06/2021,15/06/2021,13/07/2021,13/07/2021,"SI20URA2B8 FS","SI20URA2B8","SI--URA2-99 FF","SI--URA2-99",45,45,49,49,10,10,11,11,17,,"HK1003 -Blackpoint D2 - Rev.0E DD30092021"
1-2680,SI20PAD7-35,"E - AND I&C CABLING COOLING TOWER LAST 4 CELLS 20PAD",5121,"HK1003-Rev.0E-3",TT_Task,"55902",-,-,-,0,TK_NotStart,21/04/2023,,18/05/2023,,"SI20BZP7-145 FS,SI20BZP7-155 FS,SI20PAD7-36 FS,SI20PAD7-33 FF","SI20BZP7-145,SI20BZP7-155,SI20PAD7-36,SI20PAD7-33","SI20PAD8-10 FS,SI20BZK7D10# SS,SI20BZK7D10# FF","SI20PAD8-10,SI20BZK7D10#,SI20BZK7D10#",141,,145,,33,,34,,96,64,"HK1003 -Blackpoint D2 - Rev.0E DD30092021"
1-2681,SI20BZP7-155,"ERECTION CABLE TRAYS FOR 20URA  AREA PART 2",5121,"HK1003-Rev.0E-3",TT_Task,"55902",-,-,-,0,TK_NotStart,30/03/2023,,12/04/2023,,"SI--BZP4B40 FS,SI20BZP7-26 FS,SI20BZP7-145 FS,SI--PEE7-20 FS,SI20PAD6-69 SS","SI--BZP4B40,SI20BZP7-26,SI20BZP7-145,SI--PEE7-20,SI20PAD6-69","SI20PAD7-35 FS,SI20BZP7B10# FF,SI20BZP7B10# SS,SI20PAD7-33 FS,SI20BZL7E18 FS","SI20PAD7-35,SI20BZP7B10#,SI20BZP7B10#,SI20PAD7-33,SI20BZL7E18",138,,140,,32,,32,,93,128,"HK1003 -Blackpoint D2 - Rev.0E DD30092021"
1-2682,SI20URD5-47,"FINISHING WORKS / ROOF CONSTRUCTION 20URD",5121,"HK1003-Rev.0E-3",TT_Task,"55902",-,-,-,0,TK_NotStart,21/01/2022,,03/03/2022,,"SI20URD5-37 FS","SI20URD5-37","SI20URD5-46 FS","SI20URD5-46",76,,82,,17,,19,,46,1352,"HK1003 -Blackpoint D2 - Rev.0E DD30092021"
1-2683,SI--URD2-78,"BD - SUBMISSION & APPROVAL - DETAIL DESIGN CONCRETE 20URD xxxx",5121,"HK1003-Rev.0E-3",TT_Task,"55902",-,-,-,100,TK_Complete,14/07/2021,14/07/2021,11/09/2021,11/09/2021,"SI--URD2-71 SS,SI20URD2B04 FS,SI-P221-265& FS","SI--URD2-71,SI20URD2B04,SI-P221-265&","SI20URD3-19 FS,SI--URD2-93 SS","SI20URD3-19,SI--URD2-93",49,49,58,58,11,11,13,13,21,,"HK1003 -Blackpoint D2 - Rev.0E DD30092021"
1-2684,SI--URD2-79,"BD - CONSENT LETTER DETAIL DESIGN CONCRETE 20URD xx",5121,"HK1003-Rev.0E-3",TT_Task,"55902",-,-,-,100,TK_Complete,15/05/2021,15/05/2021,25/06/2021,25/06/2021,"SI20URD2B04 FS","SI20URD2B04","SI20URD5-10 FS,SI20URD2-75 FS","SI20URD5-10,SI20URD2-75",41,41,46,46,9,9,10,10,12,,"HK1003 -Blackpoint D2 - Rev.0E DD30092021"
1-2685,SI--ULA2-78,"BD - SUBMISSION & APPROVAL - DETAIL DESIGN CONCRETE 20ULA",5121,"HK1003-Rev.0E-3",TT_Task,"55902",-,-,-,100,TK_Complete,02/08/2021,02/08/2021,31/08/2021,31/08/2021,"SI--ULA2-71 FF,SI20ULA2B04 FS,SI--ULA2-70 FS,SI-P221-105& FS,SI--ULA2-79 FS,SI--UHA2-79 SS","SI--ULA2-71,SI20ULA2B04,SI--ULA2-70,SI-P221-105&,SI--ULA2-79,SI--UHA2-79","SI20ULA5-05 FS,SI--ULA2-80 FF,SI--ULA2-83 FS","SI20ULA5-05,SI--ULA2-80,SI--ULA2-83",52,52,56,56,12,12,13,13,24,,"HK1003 -Blackpoint D2 - Rev.0E DD30092021"
1-2686,SI--ULA2-79,"BD - CONSENT LETTER DETAIL DESIGN CONCRETE 20ULA-x",5121,"HK1003-Rev.0E-3",TT_Task,"55902",-,-,-,100,TK_Complete,15/06/2021,15/06/2021,26/07/2021,26/07/2021,"SI20ULA2B04 FS,SI20ULA2B04 FF","SI20ULA2B04,SI20ULA2B04","SI20ULA5-05 FS,SI--ULA2-78 FS,SI--ULA2-81 FS","SI20ULA5-05,SI--ULA2-78,SI--ULA2-81",45,45,51,51,10,10,11,11,17,,"HK1003 -Blackpoint D2 - Rev.0E DD30092021"
1-2687,SI20HB-3A82,"(RFS) READY FOR SHIPMENT CASING HRSG20 (Incl. Installation Material)",5121,"HK1003-Rev.0E-3",TT_FinMile,"55902",-,-,-,0,TK_NotStart,02/12/2021,,02/12/2021,,"SI20HB-4B16 FS","SI20HB-4B16","SI20HB-4A26 FS","SI20HB-4A26",69,,69,,16,,16,,40,176,"HK1003 -Blackpoint D2 - Rev.0E DD30092021"
1-2688,SI20HB-4B16,"LOGISTICS AND CUSTOMS PREPARATION CASING HRSG20",5121,"HK1003-Rev.0E-3",TT_Task,"55902",-,-,-,0,TK_NotStart,05/11/2021,,02/12/2021,,"SI20HB-3B76 FS","SI20HB-3B76","SI20HB-3A82 FS","SI20HB-3A82",65,,69,,15,,16,,37,176,"HK1003 -Blackpoint D2 - Rev.0E DD30092021"
1-2689,SI20HB-3B76,"TIMES OF COMPLETION (FINAL DATA IN KANLOG) CASING HRSG20",5121,"HK1003-Rev.0E-3",TT_FinMile,"55902",-,-,-,0,TK_NotStart,04/11/2021,,04/11/2021,,"SI20HB-3A83 FS","SI20HB-3A83","SI20HB-4B16 FS","SI20HB-4B16",65,,65,,15,,15,,37,176,"HK1003 -Blackpoint D2 - Rev.0E DD30092021"
1-2690,SI20HB-3A83,"MANUFACTURING CASING HRSG20",5121,"HK1003-Rev.0E-3",TT_Task,"55902",-,-,-,82,TK_Active,14/04/2021,14/04/2021,04/11/2021,,"SI20HB-3A25 FF,SI--HB-2-17 FF","SI20HB-3A25,SI--HB-2-17","SI20HB-3B76 FS","SI20HB-3B76",36,36,65,,8,8,15,,8,176,"HK1003 -Blackpoint D2 - Rev.0E DD30092021"
1-2691,SI--UMC2A77,"BD - SUBMISSION & APPROVAL - TURBOSET DETAIL DESIGN CONCRET - 1ST AMMENDMENT (PILE CAP)",5121,"HK1003-Rev.0E-3",TT_Task,"55902",-,-,-,97,TK_Active,03/08/2021,03/08/2021,01/10/2021,,"SI--UMC2A71 FS,SI--UMC2A04 FS,SI--2222-109 FS,SI-P221-10& FS","SI--UMC2A71,SI--UMC2A04,SI--2222-109,SI-P221-10&","SI--UMC2A90 FF","SI--UMC2A90",52,52,60,,12,12,14,,24,152,"HK1003 -Blackpoint D2 - Rev.0E DD30092021"
1-2692,SI--UMC2A79,"CLIENT - REVIEW - DETAIL DESIGN CONCRETE - CEP/LDK - PIT 20UMC",5121,"HK1003-Rev.0E-3",TT_Task,"55902",-,-,-,100,TK_Complete,19/02/2021,19/02/2021,15/03/2021,15/03/2021,"SI--UMC2Y70 FF,SI--UMC2Y81 FF","SI--UMC2Y70,SI--UMC2Y81","SI--UMC2A80 FS,SI-P222-147 FS","SI--UMC2A80,SI-P222-147",28,28,32,32,6,6,7,7,5,,"HK1003 -Blackpoint D2 - Rev.0E DD30092021"
1-2693,SI--UMC2A80,"BD - SUBMISSION & APPROVAL - DETAIL DESIGN CONCRETE - CEP/LDK - PIT 20UMC",5121,"HK1003-Rev.0E-3",TT_Task,"55902",-,-,-,100,TK_Complete,16/03/2021,16/03/2021,14/05/2021,14/05/2021,"SI--UMC2A79 FS,SI-P221-365& FS","SI--UMC2A79,SI-P221-365&","SI--UMC2A81 FS","SI--UMC2A81",32,32,40,40,7,7,9,9,6,,"HK1003 -Blackpoint D2 - Rev.0E DD30092021"
1-2694,SI--UMC2A81,"BD - CONSENT LETTER DETAIL DESIGN CONCRETE CEP/LDK PIT 20UMC",5121,"HK1003-Rev.0E-3",TT_Task,"55902",-,-,-,100,TK_Complete,15/05/2021,15/05/2021,25/06/2021,25/06/2021,"SI--UMC2A80 FS","SI--UMC2A80","SI--UMC2Y75 FS,SI--UMC2A85 FF,SI20UMC2B70 FS","SI--UMC2Y75,SI--UMC2A85,SI20UMC2B70",41,41,46,46,9,9,10,10,12,,"HK1003 -Blackpoint D2 - Rev.0E DD30092021"
1-2695,SI20UMC5A46,"FINISHING WORKS / CURING TIME TURBOSET FOUNDATION 20UMC",5121,"HK1003-Rev.0E-3",TT_Task,"55902",-,-,-,0,TK_NotStart,15/11/2021,,28/11/2021,,"SI20UMC5A25 FS,SI--UMC2A88 FS","SI20UMC5A25,SI--UMC2A88","SI20UMC5A45 FS","SI20UMC5A45",67,,69,,15,,16,,38,944,"HK1003 -Blackpoint D2 - Rev.0E DD30092021"
1-2696,SI20UMC5Z46,"WORK PREPARATION / PILE TRIMMING / PLATE WELDING TURBOSET AREA 20UMC",5121,"HK1003-Rev.0E-3",TT_Task,"55902",-,-,-,100,TK_Complete,08/07/2021,08/07/2021,11/08/2021,11/08/2021,"SI-----5-22 FS,SI-----5-21& FS,SI-----5-20 FS,SI20UMC5Z15 SS,SI--UMC2A83 FS,SI-P222-84 FS,SI-P222-87 FS,SI-P222-88 FS,SI-P222-128 FS,SI--UMC2A86 FS","SI-----5-22,SI-----5-21&,SI-----5-20,SI20UMC5Z15,SI--UMC2A83,SI-P222-84,SI-P222-87,SI-P222-88,SI-P222-128,SI--UMC2A86","SI20UMC5A10 FS,SI20UMC5B75 FS,SI20UMC5A15# SS,SI20UMC5Y47 SS,SI-P222-131# FF,SI-P222-131# SS","SI20UMC5A10,SI20UMC5B75,SI20UMC5A15#,SI20UMC5Y47,SI-P222-131#,SI-P222-131#",48,48,53,53,11,11,12,12,21,,"HK1003 -Blackpoint D2 - Rev.0E DD30092021"
1-2697,SI--UMC2B79,"BD - SUBMISSION & APPROVAL - STEEL STRUCTURE 20UMC (Incl. Crane Walkawy) (1st SUBMISSION)",5121,"HK1003-Rev.0E-3",TT_Task,"55902",-,-,-,100,TK_Complete,17/05/2021,17/05/2021,11/08/2021,11/08/2021,"SI--UMC2B71 SS,SI-P221-465& FS","SI--UMC2B71,SI-P221-465&","SI--UMC2B80 FS,SI--UMC2B87 SS,SI--UMC2B75 FS","SI--UMC2B80,SI--UMC2B87,SI--UMC2B75",41,41,53,53,9,9,12,12,13,,"HK1003 -Blackpoint D2 - Rev.0E DD30092021"
1-2698,SI--UMC2B80,"BD -CONSENT LETTER STEEL STRUCTURE 20UMC",5121,"HK1003-Rev.0E-3",TT_Task,"55902",-,-,-,100,TK_Complete,12/08/2021,12/08/2021,22/09/2021,22/09/2021,"SI--UMC2B79 FS","SI--UMC2B79","SI20SMM3-25 FF,SI--UMC2B94 FS,SI20SMM3-81 FF","SI20SMM3-25,SI--UMC2B94,SI20SMM3-81",53,53,59,59,12,12,13,13,25,,"HK1003 -Blackpoint D2 - Rev.0E DD30092021"
1-2699,SI--2222-109,"PILE CAP & FOUNDATION DESIGN (WITH PREL. DESIGN FOR ALL AREAS)",5121,"HK1003-Rev.0E-3",TT_Task,"55902",-,-,-,100,TK_Complete,01/08/2020,01/08/2020,28/02/2021,28/02/2021,"SI--2222-108 FF","SI--2222-108","SI--UMC2A77 FS","SI--UMC2A77",0,0,30,30,0,0,7,7,0,,"HK1003 -Blackpoint D2 - Rev.0E DD30092021"
1-2700,SI--2222-108,"(MS2) LOADING DATA COMPILATION FOR PILE CAP DESIGN",5121,"HK1003-Rev.0E-3",TT_Task,"55902",-,-,-,100,TK_Complete,01/08/2020,01/08/2020,30/10/2020,30/10/2020,"SI-----1-03 FS,SI20---2M10 SS","SI-----1-03,SI20---2M10","SI--2222-109 FF","SI--2222-109",0,0,12,12,0,0,3,3,0,,"HK1003 -Blackpoint D2 - Rev.0E DD30092021"
1-2701,SI20UMC5B47,"ERECTION STEEL STRUCTURE ANNEX 20UMC",5121,"HK1003-Rev.0E-3",TT_Task,"55902",-,-,-,0,TK_NotStart,07/03/2022,,17/04/2022,,"SI20UMC5B15 FF","SI20UMC5B15","SI20UMC5I45 FS,SI20UMC5B96 FF","SI20UMC5I45,SI20UMC5B96",83,,89,,19,,20,,52,368,"HK1003 -Blackpoint D2 - Rev.0E DD30092021"
1-2702,SI--UMC2B83,"CLIENT - REVIEW - DETAIL DESIGN - CLADDING 20UMC",5121,"HK1003-Rev.0E-3",TT_Task,"55902",-,-,-,100,TK_Complete,14/08/2021,14/08/2021,07/09/2021,07/09/2021,"SI--UMC2B82 FS","SI--UMC2B82","SI--UMC2B85 FS,SI--UMC2B84 SS","SI--UMC2B85,SI--UMC2B84",54,54,57,57,12,12,13,13,25,,"HK1003 -Blackpoint D2 - Rev.0E DD30092021"
1-2703,SI--UMC2B82,"DETAIL DESIGN CLADDING 20UMC",5121,"HK1003-Rev.0E-3",TT_Task,"55902",-,-,-,100,TK_Complete,15/06/2021,15/06/2021,13/08/2021,13/08/2021,"SI--UMC2B60 FS,SI20UMC2B66 FS,SI--5552-85 FS","SI--UMC2B60,SI20UMC2B66,SI--5552-85","SI--UMC2B85 FS,SI--UMC2B83 FS,SI20UMC2D5 FS","SI--UMC2B85,SI--UMC2B83,SI20UMC2D5",45,45,53,53,10,10,12,12,17,,"HK1003 -Blackpoint D2 - Rev.0E DD30092021"
1-2704,SI20UMC3B26,"FABRICATION DESIGN/FABRICATION/TRANSPORT CLADDING 20UMC",5121,"HK1003-Rev.0E-3",TT_Task,"55902",-,-,-,0,TK_NotStart,13/10/2021,,22/03/2022,,"SI--UMC2B85 FS,SI--UMC2B90 FS,SI--UMC2B84 FS","SI--UMC2B85,SI--UMC2B90,SI--UMC2B84","SI20UMC5C10 FS","SI20UMC5C10",62,,85,,14,,19,,34,64,"HK1003 -Blackpoint D2 - Rev.0E DD30092021"
1-2705,SI--UMC2B85,"(F) DETAIL DESIGN CLADDING WITH CONTRACTOR 20UMC",5121,"HK1003-Rev.0E-3",TT_FinMile,"55902",-,-,-,0,TK_NotStart,12/10/2021,,12/10/2021,,"SI--UMC2B83 FS,SI--UMC2B82 FS,SI--UMC2B84 FS","SI--UMC2B83,SI--UMC2B82,SI--UMC2B84","SI20UMC3B26 FS","SI20UMC3B26",62,,62,,14,,14,,33,64,"HK1003 -Blackpoint D2 - Rev.0E DD30092021"
1-2706,SI--UMC2B84,"BD - SUBMISSION & APPROVAL - STANDING SEAM ROOF/WALL/PANELS - CLADDING 20UMC",5121,"HK1003-Rev.0E-3",TT_Task,"55902",-,-,-,78,TK_Active,14/08/2021,14/08/2021,12/10/2021,,"SI--UMC2B83 SS,SI-P221-415& FS","SI--UMC2B83,SI-P221-415&","SI--UMC2B86 FS,SI--UMC2B90 SS,SI20UMC3B26 FS,SI--UMC2B85 FS","SI--UMC2B86,SI--UMC2B90,SI20UMC3B26,SI--UMC2B85",54,54,62,,12,12,14,,25,64,"HK1003 -Blackpoint D2 - Rev.0E DD30092021"
1-2707,SI--UMC2B86,"BD - CONSENT LETTER - STANDING SEAM ROOF/WALL/PANELS - CLADDING 20UMC",5121,"HK1003-Rev.0E-3",TT_Task,"55902",-,-,-,0,TK_NotStart,13/10/2021,,09/11/2021,,"SI--UMC2B84 FS","SI--UMC2B84","SI20UMC2D5 FS","SI20UMC2D5",62,,66,,14,,15,,34,1728,"HK1003 -Blackpoint D2 - Rev.0E DD30092021"
1-2708,SI--UMC2B87,"BD - SUBMISSION & APPROVAL - STEEL PLATFORMS LOT1 20UMC GENO & ST",5121,"HK1003-Rev.0E-3",TT_Task,"55902",-,-,-,89,TK_Active,15/07/2021,15/07/2021,09/10/2021,,"SI--UMC2B79 SS,SI--UMC2E70 FS,SI--UMC2B89 SS,SI-P221-470& FS,SI-P221-572& FS,SI-P221-569& FS,SI-P221-570& FS,SI-P221-571& FS","SI--UMC2B79,SI--UMC2E70,SI--UMC2B89,SI-P221-470&,SI-P221-572&,SI-P221-569&,SI-P221-570&,SI-P221-571&","SI--UMC2B88 FS,SI--UMC2F75 FS,SI20UMC3E25 FS","SI--UMC2B88,SI--UMC2F75,SI20UMC3E25",49,49,62,,11,11,14,,22,528,"HK1003 -Blackpoint D2 - Rev.0E DD30092021"
1-2709,SI--UMC2B88,"BD - CONSENT LETTER STEEL PLATFORMS LOT1  20UMC",5121,"HK1003-Rev.0E-3",TT_Task,"55902",-,-,-,0,TK_NotStart,10/10/2021,,20/11/2021,,"SI--UMC2B87 FS","SI--UMC2B87","SI20UMC3E25 FF,SI20UMC2B72 FS","SI20UMC3E25,SI20UMC2B72",62,,68,,14,,15,,32,776,"HK1003 -Blackpoint D2 - Rev.0E DD30092021"
1-2710,SI--UMC2B89,"CLIENT - REVIEW - DETAIL DESIGN - STEEL STRUCTURE LOT1 20UMC",5121,"HK1003-Rev.0E-3",TT_Task,"55902",-,-,-,100,TK_Complete,17/06/2021,17/06/2021,11/07/2021,11/07/2021,"SI--UMC2E70 FS","SI--UMC2E70","SI--UMC2B87 SS","SI--UMC2B87",45,45,49,49,10,10,11,11,17,,"HK1003 -Blackpoint D2 - Rev.0E DD30092021"
1-2711,SI20MAG6-61,"START ERECTION CONDENSER",5121,"HK1003-Rev.0E-3",TT_Mile,"55902",-,-,-,0,TK_NotStart,18/05/2022,,18/05/2022,,"SI20SMM6-70 FS,SP20MAG4B41 FS","SI20SMM6-70,SP20MAG4B41","SI20MAG6-06 FS,SI20MAG6-00 FS","SI20MAG6-06,SI20MAG6-00",93,,93,,21,,21,,65,144,"HK1003 -Blackpoint D2 - Rev.0E DD30092021"
1-2712,SI--URA2-89,"BD - CONSENT LETTER SUPERSTRUCTURE 20URA/URD",5121,"HK1003-Rev.0E-3",TT_Task,"55902",-,-,-,100,TK_Complete,25/08/2021,25/08/2021,21/09/2021,21/09/2021,"SI20URA2B7 FS","SI20URA2B7","SI--URA2-91 FS,SI20URA5-52 FS,SI20URA5-54 FS,SI--URA2-93 SS,SI20URA5-48.01 FS","SI--URA2-91,SI20URA5-52,SI20URA5-54,SI--URA2-93,SI20URA5-48.01",55,55,59,59,12,12,13,13,27,,"HK1003 -Blackpoint D2 - Rev.0E DD30092021"
1-2713,SP20MA-3-82,"ENGINEERING / PREPARATION RFQ STEAM TURBINE",5121,"HK1003-Rev.0E-3",TT_Task,"55902",-,-,-,100,TK_Complete,16/11/2020,16/11/2020,14/01/2021,14/01/2021,"SI-----1-01 FS","SI-----1-01","SP20MA-3-25 FS,SP20MA2B43 FS,SP20MA2B42 FS,SI-----1-04 FS","SP20MA-3-25,SP20MA2B43,SP20MA2B42,SI-----1-04",15,15,23,23,3,3,5,5,0,,"HK1003 -Blackpoint D2 - Rev.0E DD30092021"
1-2714,SI20MA-6B83,"BEARINGS READY FOR PLACING STEAM TURBINE",5121,"HK1003-Rev.0E-3",TT_FinMile,"55902",-,-,-,0,TK_NotStart,30/07/2022,,30/07/2022,,"SI20MA-5-27 FS,SI20MA-5-25 FS,SI20MA-6-12 FS,SI20MA-6B47 FS,SI20MA-6-07 FS","SI20MA-5-27,SI20MA-5-25,SI20MA-6-12,SI20MA-6B47,SI20MA-6-07","SI20MA-6A10 FS,SI20MA-6B16 FS,SI20MA-6B82 FS","SI20MA-6A10,SI20MA-6B16,SI20MA-6B82",104,,104,,24,,24,,76,128,"HK1003 -Blackpoint D2 - Rev.0E DD30092021"
1-2715,SI20MKA6-81,"MEASUREMENT OF AXIAL ALIGNMENT OF SHAFT TO ST MKA",5121,"HK1003-Rev.0E-3",TT_Task,"55902",-,-,-,0,TK_NotStart,31/01/2023,,01/02/2023,,"SI20MKA6-37 FS","SI20MKA6-37","SI20MKA5-26 FS","SI20MKA5-26",130,,130,,30,,30,,89,336,"HK1003 -Blackpoint D2 - Rev.0E DD30092021"
1-2716,SI20MKA6F16,"TEMPORARY COUPLING AND SWING CHECK OF SLIPRING SHAFT OF SLIPRING SET MKA",5121,"HK1003-Rev.0E-3",TT_Task,"55902",-,-,-,0,TK_NotStart,07/09/2022,,08/09/2022,,"SI20MKA6F05 FS,SI20MKA6-32 FS,SI20MKA6F17 FS","SI20MKA6F05,SI20MKA6-32,SI20MKA6F17","SI20MKA6-26 FS,SI20MKA6F18 FS","SI20MKA6-26,SI20MKA6F18",109,,109,,25,,25,,80,1200,"HK1003 -Blackpoint D2 - Rev.0E DD30092021"
1-2717,SI--HB-2-16,"BD - HRSG PACKAGES SUBMISSION & APPROVAL",5121,"HK1003-Rev.0E-3",TT_Task,"55902",-,-,-,100,TK_Complete,16/05/2021,16/05/2021,14/07/2021,14/07/2021,"SI--HA-2-85 FS,SI-P221-430& FS,SI-P221-561& FS,SI--HA-2-101 FS","SI--HA-2-85,SI-P221-430&,SI-P221-561&,SI--HA-2-101","SI--HB-2-17 FS","SI--HB-2-17",41,41,49,49,9,9,11,11,13,,"HK1003 -Blackpoint D2 - Rev.0E DD30092021"
1-2718,SI--HB-2-17,"BD - CONSENT LETTER HRSG PACKAGES",5121,"HK1003-Rev.0E-3",TT_Task,"55902",-,-,-,100,TK_Complete,15/07/2021,15/07/2021,11/08/2021,11/08/2021,"SI--HB-2-16 FS","SI--HB-2-16","SI20HB-3A25 FF,SI20HA-3C25 FF,SI20HB-3A83 FF","SI20HB-3A25,SI20HA-3C25,SI20HB-3A83",49,49,53,53,11,11,12,12,22,,"HK1003 -Blackpoint D2 - Rev.0E DD30092021"
1-2719,SI20UHA2B-11,"LOGISTICS AND CUSTOMS PREPARATION EMBEDDED PART HRSG20",5121,"HK1003-Rev.0E-3",TT_Task,"55902",-,-,-,100,TK_Complete,07/07/2021,07/07/2021,03/08/2021,03/08/2021,"SI20UHA2B-10 FS","SI20UHA2B-10","SI20UHA2B-12 FS","SI20UHA2B-12",48,48,52,52,11,11,12,12,21,,"HK1003 -Blackpoint D2 - Rev.0E DD30092021"
1-2720,SI20UHA2B-10,"TIMES OF COMPLETION (FINAL DATA IN KANLOG) EMBEDDED PART HRSG20",5121,"HK1003-Rev.0E-3",TT_FinMile,"55902",-,-,-,100,TK_Complete,06/07/2021,06/07/2021,06/07/2021,06/07/2021,"SI20UHA2B-9 FS","SI20UHA2B-9","SI20UHA2B-11 FS","SI20UHA2B-11",48,48,48,48,11,11,11,11,21,,"HK1003 -Blackpoint D2 - Rev.0E DD30092021"
1-2721,SI20ZTA6A0,"PREPARATION MAIN PIPING SYSTEMS FOR CHEMICAL CLEANING",5121,"HK1003-Rev.0E-3",TT_Task,"55902",-,-,-,0,TK_NotStart,15/04/2023,,12/05/2023,,"SI20UMY6M70 FS,SI--ZTA4A40 FS","SI20UMY6M70,SI--ZTA4A40","SI20--P6-75 FS,SI20--P6-76 FF","SI20--P6-75,SI20--P6-76",141,,144,,32,,33,,95,0,"HK1003 -Blackpoint D2 - Rev.0E DD30092021"
1-2722,SI--U--2-87,"(B) PREL. GENERAL ARRANGEMENT DWGS AVAILABLE - FOR MAIN CIVIL WORKS",5121,"HK1003-Rev.0E-3",TT_Mile,"55902",-,-,-,100,TK_Complete,15/01/2021,15/01/2021,15/01/2021,15/01/2021,"SI-----1-05 FS,SI--5552-11 SS","SI-----1-05,SI--5552-11","SI--5552-81 FS","SI--5552-81",23,23,23,23,5,5,5,5,2,,"HK1003 -Blackpoint D2 - Rev.0E DD30092021"
1-2723,SI-UZA2-65,"BD - SUBMISSION & APPROVAL -UNDERGROUND (U/G) DRAINAGE RC PLANS",5121,"HK1003-Rev.0E-3",TT_Task,"55902",-,-,-,92,TK_Active,21/05/2021,21/05/2021,10/10/2021,,"SI-UZA2-60 SS,SI-P221-380& FS","SI-UZA2-60,SI-P221-380&","SI-UZA2-70 FS,SI20UBH2-75 FS","SI-UZA2-70,SI20UBH2-75",41,41,62,,9,9,14,,13,1416,"HK1003 -Blackpoint D2 - Rev.0E DD30092021"
1-2724,SI-UZA2-55,"CLIENT - REVIEW - RING ROAD INCL. UNDERGROUND (U/G) DRAINAGE",5121,"HK1003-Rev.0E-3",TT_Task,"55902",-,-,-,100,TK_Complete,30/05/2021,30/05/2021,23/06/2021,23/06/2021,"SI-UZA2-45 FS,SI-UZA2-50 FS,SI-UZA2-45 FF,SI-UZA2-50 FF","SI-UZA2-45,SI-UZA2-50,SI-UZA2-45,SI-UZA2-50","SI-UZA2-60 SS","SI-UZA2-60",43,43,46,46,10,10,10,10,15,,"HK1003 -Blackpoint D2 - Rev.0E DD30092021"
1-2725,SP20MBL2-96,"BD SUBMISSION & APPROVAL - AIR INTAKE EXTERNAL / INTERNAL PORTION",5121,"HK1003-Rev.0E-3",TT_Task,"55902",-,-,-,98,TK_Active,16/08/2021,16/08/2021,30/09/2021,,"SP20MBL2-81 FS,SP20MBL2-99& FS,SP20MBL2-95 FS,SP20MBL2-100& FS,SP20MBL2-101 FS","SP20MBL2-81,SP20MBL2-99&,SP20MBL2-95,SP20MBL2-100&,SP20MBL2-101","SP20MBL2-97 FS,SP20MBL2-87 SS","SP20MBL2-97,SP20MBL2-87",54,54,60,,12,12,14,,26,184,"HK1003 -Blackpoint D2 - Rev.0E DD30092021"
1-2726,SP20MBL2-97,"BD APPROVAL LETTER - AIR INTAKE EXTERNAL / INTERNAL PORTION",5121,"HK1003-Rev.0E-3",TT_Task,"55902",-,-,-,0,TK_NotStart,01/10/2021,,28/10/2021,,"SP20MBL2-96 FS","SP20MBL2-96","SP20MBL3-25 SS,SP20MBL3-25 FF","SP20MBL3-25,SP20MBL3-25",60,,64,,14,,15,,31,184,"HK1003 -Blackpoint D2 - Rev.0E DD30092021"
1-2727,SI--2222-132,"1(a) - BD - GBP 2ND AMENDMENT SUBMISSION (INCL. MIC UNITS) - CONSENT LETTER",5121,"HK1003-Rev.0E-3",TT_Task,"55902",-,-,-,100,TK_Complete,14/05/2021,14/05/2021,18/06/2021,18/06/2021,"SI--2222-104 FS","SI--2222-104","SI20UBA5-15 FS,SI20UBA5-10 FS,SI20UBA5-12 FS,SI20UMX2-82 FS","SI20UBA5-15,SI20UBA5-10,SI20UBA5-12,SI20UMX2-82",40,40,45,45,9,9,10,10,12,,"HK1003 -Blackpoint D2 - Rev.0E DD30092021"
1-2728,SI--UBF2-80,"BD - SUBMISSION & APPROVAL - DETAIL DESIGN CONCRETE  20UBE/UBF",5121,"HK1003-Rev.0E-3",TT_Task,"55902",-,-,-,77,TK_Active,15/08/2021,15/08/2021,13/10/2021,,"SI--UBF2-71 SS,SI20UBF2B04 FS,SI-P221-150& FS","SI--UBF2-71,SI20UBF2B04,SI-P221-150&","SI--UBF2-81 FS,SI--UBF2-82 SS,SI20UGU2-56 SS,SI--UBF2-89 FF,SI--UBF2A75 FS","SI--UBF2-81,SI--UBF2-82,SI20UGU2-56,SI--UBF2-89,SI--UBF2A75",54,54,62,,12,12,14,,26,144,"HK1003 -Blackpoint D2 - Rev.0E DD30092021"
1-2729,SI--UBF2-81,"BD - CONSENT LETTER DESIGN 20UBE/UBF",5121,"HK1003-Rev.0E-3",TT_Task,"55902",-,-,-,0,TK_NotStart,14/10/2021,,10/11/2021,,"SI--UBF2-80 FS","SI--UBF2-80","SI20UBF5-10 FS,SI--UBF2A77 FS","SI20UBF5-10,SI--UBF2A77",62,,66,,14,,15,,34,432,"HK1003 -Blackpoint D2 - Rev.0E DD30092021"
1-2730,SI--UBF2-82,"BD - SUBMISSION & APPROVAL - GEN TRAFO PLATFORM 20UBF",5121,"HK1003-Rev.0E-3",TT_Task,"55902",-,-,-,77,TK_Active,15/08/2021,15/08/2021,13/10/2021,,"SI--UBF2-80 SS,SI-P221-450& FS","SI--UBF2-80,SI-P221-450&","SI--UBF2-83 FS,SI--UBF2A75 FS","SI--UBF2-83,SI--UBF2A75",54,54,62,,12,12,14,,26,144,"HK1003 -Blackpoint D2 - Rev.0E DD30092021"
1-2731,SI--UBF2-83,"BD- CONSENT LETTER GEN TRAFO PLATFORM 20UBF",5121,"HK1003-Rev.0E-3",TT_Task,"55902",-,-,-,0,TK_NotStart,14/10/2021,,10/11/2021,,"SI--UBF2-82 FS","SI--UBF2-82","SI--UBF2B75 FS,SI20UBF5-10 FS","SI--UBF2B75,SI20UBF5-10",62,,66,,14,,15,,34,432,"HK1003 -Blackpoint D2 - Rev.0E DD30092021"
1-2732,SI20UBE5-18,"CONSTRUCTION FOUNDATION 20UBE",5121,"HK1003-Rev.0E-3",TT_Task,"55902",-,-,-,0,TK_NotStart,07/11/2021,,02/12/2021,,"SI20UBF5-19 SS","SI20UBF5-19","SI20UBE5E46 FS","SI20UBE5E46",66,,69,,15,,16,,37,768,"HK1003 -Blackpoint D2 - Rev.0E DD30092021"
1-2733,SI20UBE5E46,"CONSTRUCTION WALLS 20UBE",5121,"HK1003-Rev.0E-3",TT_Task,"55902",-,-,-,0,TK_NotStart,12/01/2022,,22/02/2022,,"SI20UBE5-18 FS,SI20UBF5E15.00 SS","SI20UBE5-18,SI20UBF5E15.00","SI20UBF5E15.04 FF","SI20UBF5E15.04",75,,81,,17,,19,,45,448,"HK1003 -Blackpoint D2 - Rev.0E DD30092021"
1-2734,SI20UBF5-19,"CONSTRUCTION BASEPLATE 20UBF - Capping plate and U rebar installation",5121,"HK1003-Rev.0E-3",TT_Task,"55902",-,-,-,0,TK_NotStart,07/11/2021,,04/12/2021,,"SI20UBF5-05.02 FS","SI20UBF5-05.02","SI20UBF5-15 FS,SI20UGU5-79 SS,SI20UBE5-18.01 FS,SI20UBE5-18.00 FS,SI20UBE5-18 SS","SI20UBF5-15,SI20UGU5-79,SI20UBE5-18.01,SI20UBE5-18.00,SI20UBE5-18",66,,70,,15,,16,,37,144,"HK1003 -Blackpoint D2 - Rev.0E DD30092021"
1-2735,SI20UEN2-100,"BD - SUBMISSION & APPROVAL - DETAIL DESIGN CONCRETE 01UEN",5121,"HK1003-Rev.0E-3",TT_Task,"55902",-,-,-,0,TK_NotStart,11/10/2021,,09/12/2021,,"SI20UEN2-99 SS,SI-P221-275& FS,SI--UBA2-96 SS","SI20UEN2-99,SI-P221-275&,SI--UBA2-96","SI20UEN2-105 FS,SI20UEN2-108 FS","SI20UEN2-105,SI20UEN2-108",62,,70,,14,,16,,33,1248,"HK1003 -Blackpoint D2 - Rev.0E DD30092021"
1-2736,SI20UEN2-99,"CLIENT - REVIEW - DETAIL DESIGN CONCRETE 01UEN",5121,"HK1003-Rev.0E-3",TT_Task,"55902",-,-,-,80,TK_Active,10/09/2021,10/09/2021,04/10/2021,,"SI20UEN2-90 SS","SI20UEN2-90","SI20UEN2-100 SS","SI20UEN2-100",57,57,61,,13,13,14,,29,1336,"HK1003 -Blackpoint D2 - Rev.0E DD30092021"
1-2737,SI20UEN2-105,"BD - CONSENT LETTER DETAIL DESIGN CONCRETE 01UEN",5121,"HK1003-Rev.0E-3",TT_Task,"55902",-,-,-,0,TK_NotStart,10/12/2021,,06/01/2022,,"SI20UEN2-100 FS","SI20UEN2-100","SI20UEN2-75 FS,SI20UEN2-109 FS","SI20UEN2-75,SI20UEN2-109",70,,74,,16,,17,,42,1248,"HK1003 -Blackpoint D2 - Rev.0E DD30092021"
1-2738,SI20EKG6H16,"ERECTION, NDT, PT (PT & PIGGING) PIPES / VALVES 00EKG (TP-M1A/B - 00UEN03/04)",5121,"HK1003-Rev.0E-3",TT_Task,"55902",-,-,-,0,TK_NotStart,19/07/2022,,16/10/2022,,"SI20EK-6-19 FF,SI20EK-6-21 FF,SI--SG-2-27 FS,SI--SG-2-38 FS,SI20TP-100& SS,CLP20UEZ5-80 FS,SI20BZP7-174 FS,SI---1P6A05 FS","SI20EK-6-19,SI20EK-6-21,SI--SG-2-27,SI--SG-2-38,SI20TP-100&,CLP20UEZ5-80,SI20BZP7-174,SI---1P6A05","SI20EK-8-10 FS,SI20-6-16# FF,SI20-6-16# SS,SI20TPM1A6-20 SS,SI20TPM1B6-20 SS","SI20EK-8-10,SI20-6-16#,SI20-6-16#,SI20TPM1A6-20,SI20TPM1B6-20",102,,115,,23,,26,,74,1432,"HK1003 -Blackpoint D2 - Rev.0E DD30092021"
1-2739,SI20HSJ6-16,"PREPARATION INSTALLATION SCR SKID HSJ/HSK",5121,"HK1003-Rev.0E-3",TT_Task,"55902",-,-,-,0,TK_NotStart,02/08/2022,,29/08/2022,,"SI20HSJ4-40 FS,SI20HB-6-48 SS","SI20HSJ4-40,SI20HB-6-48","SI20HSJ6-15 FS","SI20HSJ6-15",104,,108,,24,,25,,76,928,"HK1003 -Blackpoint D2 - Rev.0E DD30092021"
1-2740,SI20UEN2-80,"BD - SUBMISSION & APPROVAL - DETAIL DESIGN CONCRETE 20UEN",5121,"HK1003-Rev.0E-3",TT_Task,"55902",-,-,-,0,TK_NotStart,10/10/2021,,08/12/2021,,"SI20UEN2-69 SS,SI20UEN2B04 FS,SI-P221-95& FS","SI20UEN2-69,SI20UEN2B04,SI-P221-95&","SI20UEN2-77 FS,SI20UEN2-85 SS,SI20UEN2-107 FS","SI20UEN2-77,SI20UEN2-85,SI20UEN2-107",62,,70,,14,,16,,32,16,"HK1003 -Blackpoint D2 - Rev.0E DD30092021"
1-2741,SI20UEN2-69,"CLIENT - REVIEW - DETAIL DESIGN CONCRETE 20UEN",5121,"HK1003-Rev.0E-3",TT_Task,"55902",-,-,-,100,TK_Complete,02/08/2021,02/08/2021,15/09/2021,15/09/2021,"SI20UEN2-70 FF,SI--UEN2-50 FF","SI20UEN2-70,SI--UEN2-50","SI20UEN2-80 SS","SI20UEN2-80",52,52,58,58,12,12,13,13,24,,"HK1003 -Blackpoint D2 - Rev.0E DD30092021"
1-2742,SI20UEN2-77,"BD - CONSENT LETTER DETAIL DESIGN CONCRETE 20UEN",5121,"HK1003-Rev.0E-3",TT_Task,"55902",-,-,-,0,TK_NotStart,09/12/2021,,05/01/2022,,"SI20UEN2-80 FS","SI20UEN2-80","SI--UEN2A75 FS,SI--UEN2A76 FS","SI--UEN2A75,SI--UEN2A76",70,,74,,16,,17,,41,16,"HK1003 -Blackpoint D2 - Rev.0E DD30092021"
1-2743,SI20UEN2-85,"BD - SUBMISSION & APPROVAL - PLATFORM DESIGN 20UEN",5121,"HK1003-Rev.0E-3",TT_Task,"55902",-,-,-,0,TK_NotStart,10/10/2021,,08/12/2021,,"SI20UEN2-80 SS,SI--UBA2-96 SS","SI20UEN2-80,SI--UBA2-96","SI20UEN2-82 FS","SI20UEN2-82",62,,70,,14,,16,,32,2112,"HK1003 -Blackpoint D2 - Rev.0E DD30092021"
1-2744,SI20UEN2-82,"BD - CONSENT LETTER PLATFORM DESIGN 20UEN",5121,"HK1003-Rev.0E-3",TT_Task,"55902",-,-,-,0,TK_NotStart,09/12/2021,,05/01/2022,,"SI20UEN2-85 FS","SI20UEN2-85","SI20UEN2-10 FS","SI20UEN2-10",70,,74,,16,,17,,41,2112,"HK1003 -Blackpoint D2 - Rev.0E DD30092021"
1-2745,SI--SG-2-86,"CLIENT - REVIEW - DETAIL DESIGN FIRE FIGHTING",5121,"HK1003-Rev.0E-3",TT_Task,"55902",-,-,-,100,TK_Complete,20/04/2021,20/04/2021,14/05/2021,14/05/2021,"SI--SG-2-15 FS","SI--SG-2-15","SI--SG-2-87 FS","SI--SG-2-87",37,37,40,40,8,8,9,9,9,,"HK1003 -Blackpoint D2 - Rev.0E DD30092021"
1-2746,SI--SG-2-87,"FINALIZATION OF FIRE FIGHTING DESIGN",5121,"HK1003-Rev.0E-3",TT_Task,"55902",-,-,-,100,TK_Complete,15/05/2021,15/05/2021,18/06/2021,18/06/2021,"SI--SG-2-86 FS","SI--SG-2-86","SI--SG-2-88 FF,SI--SG-2-43 FS,SI--SG-2-46 FS","SI--SG-2-88,SI--SG-2-43,SI--SG-2-46",41,41,45,45,9,9,10,10,12,,"HK1003 -Blackpoint D2 - Rev.0E DD30092021"
1-2747,SI--SG-2-88,"BD - REVIEW & APPROVAL - FIRE FIGHTING DESIGN",5121,"HK1003-Rev.0E-3",TT_Task,"55902",-,-,-,100,TK_Complete,28/05/2021,28/05/2021,23/07/2021,23/07/2021,"SI--SG-2-87 FF,SI--2222-103 SS,SI-P221-390& FS","SI--SG-2-87,SI--2222-103,SI-P221-390&","SI--SG-2-43 SS,SI--SG-2-80 FF,SI--SG-2-107 FS","SI--SG-2-43,SI--SG-2-80,SI--SG-2-107",42,42,50,50,10,10,11,11,14,,"HK1003 -Blackpoint D2 - Rev.0E DD30092021"
1-2748,SI--C--3E86,"DEVELOPMENT CENTRAL CONTROL ROOM & I&C EQUIPMENT CONCEPT PLAN",5121,"HK1003-Rev.0E-3",TT_Task,"55902",-,-,-,100,TK_Complete,15/01/2021,15/01/2021,14/05/2021,14/05/2021,"SI-----1-03 FS,SI-----1-05 FS","SI-----1-03,SI-----1-05","SI--C--3E87 FS,SI--C--3E26 FS,SI--CP-3-25 FS,SI--C--3E27 FS","SI--C--3E87,SI--C--3E26,SI--CP-3-25,SI--C--3E27",23,23,40,40,5,5,9,9,2,,"HK1003 -Blackpoint D2 - Rev.0E DD30092021"
1-2749,SI--C--3E87,"DETAIL DESIGN / LAYOUT FOR CCR / CONNECTION TO EXISTING CCR / REVIEW / APPROVAL",5121,"HK1003-Rev.0E-3",TT_Task,"55902",-,-,-,77,TK_Active,15/05/2021,15/05/2021,10/11/2021,,"SI--C--3E86 FS","SI--C--3E86","SI--C--3E26 FF","SI--C--3E26",41,41,66,,9,9,15,,12,1608,"HK1003 -Blackpoint D2 - Rev.0E DD30092021"
1-2750,SI20BZK7B28,"INTERCONNECTING I&C CABLING TO EXISTING DCS IN 00UCA (D1) - 20UBA90xx TO UCA(C) / D1",5121,"HK1003-Rev.0E-3",TT_Task,"55902",-,-,-,0,TK_NotStart,17/11/2022,,15/05/2023,,"SI20BZK4-41 FS,SI20BZK4-42 FF,SI20UCA7-16 FS,SI20UCA7-15 SS,SI20UBA7C-15 FS,CLP20UBZ5-76 FS,SI20BZP7-105 FS,SI20BZP7-182 FS,SI20BZK7B01 SS,SI20BZP7-80 FS,SI20BZP7-115 FS","SI20BZK4-41,SI20BZK4-42,SI20UCA7-16,SI20UCA7-15,SI20UBA7C-15,CLP20UBZ5-76,SI20BZP7-105,SI20BZP7-182,SI20BZK7B01,SI20BZP7-80,SI20BZP7-115","SI--BRU7-19# SS,SI--BRU7-19# FF,SI20MB-9-15 FS","SI--BRU7-19#,SI--BRU7-19#,SI20MB-9-15",119,,145,,27,,33,,85,368,"HK1003 -Blackpoint D2 - Rev.0E DD30092021"
1-2751,SI20UCA7-16,"ACCESS TO CONTROL ROOM FOR INSTALLATION WORKS UCA",5121,"HK1003-Rev.0E-3",TT_Mile,"55902",-,-,-,0,TK_NotStart,04/05/2022,,04/05/2022,,"SI-----1-05 FS,SI20TP-180& FS,SI20SD-110& SS","SI-----1-05,SI20TP-180&,SI20SD-110&","SI20BZK7B28 FS,SI20BZK7B26 FS,SI20UCA7-08 FS,SI20BZK7B01 FS,SI20BZP7B40 FS,SI20TPI12A6-20 FS,SI20TPI13A6-20 FS,SI20TPI1A6-20 FS,SI20TPI4A7-20 FS,SI20TPI5A7-20 FS,SI20TPI6A7-20 FS,SI20TPI10A7-20 FS,SI20TPI17A7-20 FS,SI20TPI19I7-20 FS,SI20TPI19II7-20 FS,SI20TPI21A7-20 FS,SI20TPI22A7-20 FS,SI20TPI23A7-20 FS,SI20TPI15A7-20 FS,SI20TPI16A7-20 FS,SI20TPI20A7-20 FS,SI20TPI3A7-20 FS,SI20TPI3A7-20 SS,SI20TPI18A7-20 FS,SI20TPI2I7-20 FS,SI20TPI2II7-20 FS,SI20TPI2III7-20 FS,SI20TPI2IV7-20 FS","SI20BZK7B28,SI20BZK7B26,SI20UCA7-08,SI20BZK7B01,SI20BZP7B40,SI20TPI12A6-20,SI20TPI13A6-20,SI20TPI1A6-20,SI20TPI4A7-20,SI20TPI5A7-20,SI20TPI6A7-20,SI20TPI10A7-20,SI20TPI17A7-20,SI20TPI19I7-20,SI20TPI19II7-20,SI20TPI21A7-20,SI20TPI22A7-20,SI20TPI23A7-20,SI20TPI15A7-20,SI20TPI16A7-20,SI20TPI20A7-20,SI20TPI3A7-20,SI20TPI3A7-20,SI20TPI18A7-20,SI20TPI2I7-20,SI20TPI2II7-20,SI20TPI2III7-20,SI20TPI2IV7-20",91,,91,,21,,21,,61,1512,"HK1003 -Blackpoint D2 - Rev.0E DD30092021"
1-2752,SI20UBX2-30,"BD - SUBMISSION & APPROVAL - DETAIL DESIGN CONCRETE - AMENDMENT 20UBX/20UBG03",5121,"HK1003-Rev.0E-3",TT_Task,"55902",-,-,-,0,TK_NotStart,29/11/2021,,28/12/2021,,"SI20UBX2-25 FS,SI20UBX2B04 FS,SI--UBA2-96 SS,SI20UBX2-35 FS,SI-P221-175& FS","SI20UBX2-25,SI20UBX2B04,SI--UBA2-96,SI20UBX2-35,SI-P221-175&","SI--UBX2A75 FS,SI20UBX2-82 FS","SI--UBX2A75,SI20UBX2-82",69,,73,,16,,17,,40,1400,"HK1003 -Blackpoint D2 - Rev.0E DD30092021"
1-2753,SI20UBX2-35,"BD - CONSENT LETTER - DESIGN 20UBX/20UBG03",5121,"HK1003-Rev.0E-3",TT_Task,"55902",-,-,-,100,TK_Complete,15/06/2021,15/06/2021,26/07/2021,26/07/2021,"SI20UBX2B04 FS","SI20UBX2B04","SI--UBX2A75 FS,SI20UBX2-30 FS,SI--UBX2A76 FS","SI--UBX2A75,SI20UBX2-30,SI--UBX2A76",45,45,51,51,10,10,11,11,17,,"HK1003 -Blackpoint D2 - Rev.0E DD30092021"
1-2754,SI--UBA2-84,"BD - SUBMISSION & APPROVAL - STEEL STRUCTURE 20UBA7xxx",5121,"HK1003-Rev.0E-3",TT_Task,"55902",-,-,-,98,TK_Active,02/08/2021,02/08/2021,30/09/2021,,"SI--UBA2B70 FS,SI-P221-490& FS,SI--UBA2-93 SS,SI--2222-141 FS,SI--2222-142& FS","SI--UBA2B70,SI-P221-490&,SI--UBA2-93,SI--2222-141,SI--2222-142&","SI--UBA2-85 FS,SI--UBA2D75 FS","SI--UBA2-85,SI--UBA2D75",52,52,60,,12,12,14,,24,1976,"HK1003 -Blackpoint D2 - Rev.0E DD30092021"
1-2755,SI--UBA2-85,"BD - CONSENT LETTER - STEEL STRUCTURE 20UBA7xxx",5121,"HK1003-Rev.0E-3",TT_Task,"55902",-,-,-,0,TK_NotStart,01/10/2021,,28/10/2021,,"SI--UBA2-84 FS","SI--UBA2-84","SI20UBA3B25 FS","SI20UBA3B25",60,,64,,14,,15,,31,1976,"HK1003 -Blackpoint D2 - Rev.0E DD30092021"
1-2756,SI--UMC2B90,"BD - SUBMISSION & APPROVAL - LOUVRES  - CLADDING 20UMC",5121,"HK1003-Rev.0E-3",TT_Task,"55902",-,-,-,78,TK_Active,14/08/2021,14/08/2021,12/10/2021,,"SI--UMC2B84 SS,SI-P221-420& FS","SI--UMC2B84,SI-P221-420&","SI--UMC2B91 FS,SI20UMC3B26 FS","SI--UMC2B91,SI20UMC3B26",54,54,62,,12,12,14,,25,64,"HK1003 -Blackpoint D2 - Rev.0E DD30092021"
1-2757,SI--UMC2B91,"BD - CONSENT LETTER - LOUVRES  - CLADDING 20UMC",5121,"HK1003-Rev.0E-3",TT_Task,"55902",-,-,-,0,TK_NotStart,13/10/2021,,09/11/2021,,"SI--UMC2B90 FS","SI--UMC2B90","SI20UMC5C10 FS","SI20UMC5C10",62,,66,,14,,15,,34,1128,"HK1003 -Blackpoint D2 - Rev.0E DD30092021"
1-2758,SI20UBA7-102,"PLACING 20UBA7710/20",5121,"HK1003-Rev.0E-3",TT_Task,"55902",-,-,-,0,TK_NotStart,05/07/2022,,05/07/2022,,"SI20UBA4-42 FS,SI20UBA5-90 FS,SI20BZP7-160 FS,SI20UBF620 FS","SI20UBA4-42,SI20UBA5-90,SI20BZP7-160,SI20UBF620","SI20UBA7-17 FS,SI20BZP7-115 FS,SI20UBA5-92 FS,SI20BFT7-15 FS,SI20UBA7-104 FS,SI20UBA7-28 FS,SI20BFT7-16 FS,SI20UBA7-37# SS","SI20UBA7-17,SI20BZP7-115,SI20UBA5-92,SI20BFT7-15,SI20UBA7-104,SI20UBA7-28,SI20BFT7-16,SI20UBA7-37#",100,,100,,23,,23,,72,592,"HK1003 -Blackpoint D2 - Rev.0E DD30092021"
1-2759,SI20UBA7-26,"PLACING ELECTRICAL MODULES 20UBA7910/20",5121,"HK1003-Rev.0E-3",TT_Task,"55902",-,-,-,0,TK_NotStart,29/07/2022,,31/07/2022,,"SI20UBA4B40 FS,SI20UBA5-85 FS,SI20BZP7-50 FS,SI--UBA2K05 FS","SI20UBA4B40,SI20UBA5-85,SI20BZP7-50,SI--UBA2K05","SI20UBA7-15 FS,SI20UBA7-25 FS,SI20UBA7-25 FF,SI20BAA7-15 FS,SI20UBA5-75 FS","SI20UBA7-15,SI20UBA7-25,SI20UBA7-25,SI20BAA7-15,SI20UBA5-75",103,,104,,24,,24,,76,584,"HK1003 -Blackpoint D2 - Rev.0E DD30092021"
1-2760,SI20UBA2-25,"CLIENT - REVIEW - DETAIL DESIGN CONCRETE - 20UBA1110/20",5121,"HK1003-Rev.0E-3",TT_Task,"55902",-,-,-,0,TK_NotStart,10/10/2021,,03/11/2021,,"SI20UBA2-15 FS,SI20UBA2-20 FS","SI20UBA2-15,SI20UBA2-20","SI20UBA2-30 SS","SI20UBA2-30",62,,65,,14,,15,,32,256,"HK1003 -Blackpoint D2 - Rev.0E DD30092021"
1-2761,SI20UBA2-30,"BD - SUBMISSION & APPROVAL - DETAIL DESIGN CONCRETE - 20UBA1110/20",5121,"HK1003-Rev.0E-3",TT_Task,"55902",-,-,-,0,TK_NotStart,10/10/2021,,08/12/2021,,"SI20UBA2-25 SS,SI-P221-80& FS,SI--2222-141 FS","SI20UBA2-25,SI-P221-80&,SI--2222-141","SI20UBA2-35 FS,SI--UBA2-102 SS,SI20UHX2-30 SS,SI20UBA2B-30 FS,SI20UBA2-51 FF,SI20UBA2-40 FS","SI20UBA2-35,SI--UBA2-102,SI20UHX2-30,SI20UBA2B-30,SI20UBA2-51,SI20UBA2-40",62,,70,,14,,16,,32,256,"HK1003 -Blackpoint D2 - Rev.0E DD30092021"
1-2762,SI20UBA2-35,"BD - CONSENT LETTER - DESIGN 20UBA1110/20",5121,"HK1003-Rev.0E-3",TT_Task,"55902",-,-,-,0,TK_NotStart,09/12/2021,,05/01/2022,,"SI20UBA2-30 FS,SI20UBA2-51 FS","SI20UBA2-30,SI20UBA2-51","SI20UBA2-52 FS","SI20UBA2-52",70,,74,,16,,17,,41,368,"HK1003 -Blackpoint D2 - Rev.0E DD30092021"
1-2763,SI20UBA2B-30,"BD - SUBMISSION & APPROVAL - STEEL STRUCTURE 20UBA1110/20",5121,"HK1003-Rev.0E-3",TT_Task,"55902",-,-,-,0,TK_NotStart,09/12/2021,,06/02/2022,,"SI20UBA2B-10 FS,SI20UBA2B-15 FS,SI-P221-480& FS,SI--UBA2-106 SS,SI20UBA2-30 FS,SI--2222-141 FS,SI--2222-143& FS","SI20UBA2B-10,SI20UBA2B-15,SI-P221-480&,SI--UBA2-106,SI20UBA2-30,SI--2222-141,SI--2222-143&","SI20UBA2B-35 FS,SI20UBX2-65 SS","SI20UBA2B-35,SI20UBX2-65",70,,79,,16,,18,,41,968,"HK1003 -Blackpoint D2 - Rev.0E DD30092021"
1-2764,SI20UBA2B-35,"BD - CONSENT LETTER - STEEL STRUCTURE 20UBA1110/20",5121,"HK1003-Rev.0E-3",TT_Task,"55902",-,-,-,0,TK_NotStart,07/02/2022,,06/03/2022,,"SI20UBA2B-30 FS","SI20UBA2B-30","SI20UBA2B-20 FS","SI20UBA2B-20",79,,83,,18,,19,,48,1744,"HK1003 -Blackpoint D2 - Rev.0E DD30092021"
1-2765,SI20UBD2-20,"CLIENT - REVIEW - DETAIL DESIGN CONCRETE - 20UBD01/02",5121,"HK1003-Rev.0E-3",TT_Task,"55902",-,-,-,0,TK_NotStart,04/10/2021,,28/10/2021,,"SI20UBD2-15 FS","SI20UBD2-15","SI20UBD2-25 SS","SI20UBD2-25",61,,64,,14,,15,,31,1160,"HK1003 -Blackpoint D2 - Rev.0E DD30092021"
1-2766,SI20UBD2-25,"BD - SUBMISSION & APPROVAL - DETAIL DESIGN CONCRETE - 20UBD01/02",5121,"HK1003-Rev.0E-3",TT_Task,"55902",-,-,-,0,TK_NotStart,10/10/2021,,08/12/2021,,"SI20UBD2-20 SS,SI-P221-165& FS,SI--UBA2-96 SS","SI20UBD2-20,SI-P221-165&,SI--UBA2-96","SI20UBD2-30 FS,SI20UBD2C-90 FS,SI20UBD2-85 FS","SI20UBD2-30,SI20UBD2C-90,SI20UBD2-85",62,,70,,14,,16,,32,1112,"HK1003 -Blackpoint D2 - Rev.0E DD30092021"
1-2767,SI20UBD2-30,"BD - CONSENT LETTER - DESIGN 20UBD01/02",5121,"HK1003-Rev.0E-3",TT_Task,"55902",-,-,-,0,TK_NotStart,09/12/2021,,05/01/2022,,"SI20UBD2-25 FS","SI20UBD2-25","SI20UBD2-75 FS,SI20UBD2-86 FS","SI20UBD2-75,SI20UBD2-86",70,,74,,16,,17,,41,1976,"HK1003 -Blackpoint D2 - Rev.0E DD30092021"
1-2768,SI20UBD2-10,"BASIC DESIGN CONCRETE - 20UBD01/02",5121,"HK1003-Rev.0E-3",TT_Task,"55902",-,-,-,100,TK_Complete,30/07/2021,30/07/2021,19/08/2021,19/08/2021,"SI20UBD2-05 FS","SI20UBD2-05","SI20UBD2-15 FS","SI20UBD2-15",51,51,54,54,12,12,12,12,23,,"HK1003 -Blackpoint D2 - Rev.0E DD30092021"
1-2769,SI--UBA2-89,"CLIENT - REVIEW - STEELWORK - 20UBX/20UBG",5121,"HK1003-Rev.0E-3",TT_Task,"55902",-,-,-,0,TK_NotStart,06/12/2021,,30/12/2021,,"SI20UBX2-55 FS,SI20UBX2-60 FS","SI20UBX2-55,SI20UBX2-60","SI20UBX2-65 FS","SI20UBX2-65",70,,73,,16,,17,,41,792,"HK1003 -Blackpoint D2 - Rev.0E DD30092021"
1-2770,SI20UBX2-65,"BD - SUBMISSION & APPROVAL - STEELWORK  - 20UBX/20UBG",5121,"HK1003-Rev.0E-3",TT_Task,"55902",-,-,-,0,TK_NotStart,31/12/2021,,28/02/2022,,"SI--UBA2-89 FS,SI-P221-510& FS,SI20UBA2B-30 SS","SI--UBA2-89,SI-P221-510&,SI20UBA2B-30","SI20UBX2-70 FS","SI20UBX2-70",73,,82,,17,,19,,43,792,"HK1003 -Blackpoint D2 - Rev.0E DD30092021"
1-2771,SI20UBX2-70,"BD - CONSENT LETTER - STEELWORK 20UBX/20UBG",5121,"HK1003-Rev.0E-3",TT_Task,"55902",-,-,-,0,TK_NotStart,01/03/2022,,28/03/2022,,"SI20UBX2-65 FS","SI20UBX2-65","SI20UBX2-75 FS","SI20UBX2-75",82,,86,,19,,20,,51,792,"HK1003 -Blackpoint D2 - Rev.0E DD30092021"
1-2772,SI--UBA2-92,"CLIENT - REVIEW - DETAIL DESIGN CONCRETE - UBA7xxx",5121,"HK1003-Rev.0E-3",TT_Task,"55902",-,-,-,100,TK_Complete,28/07/2021,28/07/2021,21/08/2021,21/08/2021,"SI--UBA2-69 FS","SI--UBA2-69","SI--UBA2-93 SS","SI--UBA2-93",51,51,55,55,12,12,12,12,23,,"HK1003 -Blackpoint D2 - Rev.0E DD30092021"
1-2773,SI--UBA2-93,"BD - SUBMISSION & APPROVAL - DETAIL DESIGN CONCRETE - UBA7xxx",5121,"HK1003-Rev.0E-3",TT_Task,"55902",-,-,-,98,TK_Active,02/08/2021,02/08/2021,30/09/2021,,"SI--UBA2-92 SS,SI20UBA2B04 FS,SI-P221-130& FS,SI--2222-141 FS","SI--UBA2-92,SI20UBA2B04,SI-P221-130&,SI--2222-141","SI--UBA2-94 FS,SI--UBA2-102 SS,SI--UBA2-84 SS,SI--UBA2-108 FS","SI--UBA2-94,SI--UBA2-102,SI--UBA2-84,SI--UBA2-108",52,52,60,,12,12,14,,24,1192,"HK1003 -Blackpoint D2 - Rev.0E DD30092021"
1-2774,SI--UBA2-94,"BD - CONSENT LETTER - DESIGN UBA7xxx",5121,"HK1003-Rev.0E-3",TT_Task,"55902",-,-,-,0,TK_NotStart,01/10/2021,,28/10/2021,,"SI--UBA2-93 FS","SI--UBA2-93","SI--UBA2-75 FS,SI--UBA2-109 FS","SI--UBA2-75,SI--UBA2-109",60,,64,,14,,15,,31,1192,"HK1003 -Blackpoint D2 - Rev.0E DD30092021"
1-2775,SI--UBA2-95,"CLIENT - REVIEW - DETAIL DESIGN CONCRETE - UBA7910/7920",5121,"HK1003-Rev.0E-3",TT_Task,"55902",-,-,-,100,TK_Complete,23/08/2021,23/08/2021,16/09/2021,16/09/2021,"SI--UBA2-70 FS,SI--UBA2-50 FS","SI--UBA2-70,SI--UBA2-50","SI--UBA2-96 SS","SI--UBA2-96",55,55,58,58,12,12,13,13,27,,"HK1003 -Blackpoint D2 - Rev.0E DD30092021"
1-2776,SI--UBA2-96,"BD - SUBMISSION & APPROVAL - DETAIL DESIGN CONCRETE - UBA7910/7920",5121,"HK1003-Rev.0E-3",TT_Task,"55902",-,-,-,0,TK_NotStart,10/10/2021,,08/12/2021,,"SI--UBA2-95 SS,SI-P221-135& FS,SI--2222-141 FS","SI--UBA2-95,SI-P221-135&,SI--2222-141","SI--UBA2-97 FS,SI--UBA2-102 SS,SI20UBA2C-40 SS,SI--UBA2-106 FS,SI--UBA2-106 SS,SI20UEY2-55 SS,SI20UBD2E91 SS,SI20UBD2-25 SS,SI--UBA2-97 SS,SI20UEN2-100 SS,SI20UEN2-85 SS,SI20UBX2-30 SS,SI20UTG2-70 SS,SI20UTG2-78 SS,SI20UTG2-86 SS,SI20UTG2-46 SS,SI20UTG2-54 SS,SI20UTG2-62 SS,SI20UBY2-30 SS,SI20UEX2-45 SS,SI20UBN2-30 SS,SI20UTG2-30 SS,SI20UMX2-82 SS,SI20UEY2-85 SS,SI20UQY2-94 SS,SI20UQY2-102 SS,SI20UQZ2-98 SS,SI20UQZ2-106 SS,SI20UQY2-86 SS,SI20UQX2-30 SS,SI20UBY2-46 SS,SI20UBY2-54 SS,SI20UBY2-62 SS,SI20USX2-30 SS,SI20UHX2-30 SS,SI20UGU2-56 SS,SI20UGU2-64 SS,SI20UZJ2-86 SS,SI20UBZ2-86 SS,SI--UBA2-110 FS","SI--UBA2-97,SI--UBA2-102,SI20UBA2C-40,SI--UBA2-106,SI--UBA2-106,SI20UEY2-55,SI20UBD2E91,SI20UBD2-25,SI--UBA2-97,SI20UEN2-100,SI20UEN2-85,SI20UBX2-30,SI20UTG2-70,SI20UTG2-78,SI20UTG2-86,SI20UTG2-46,SI20UTG2-54,SI20UTG2-62,SI20UBY2-30,SI20UEX2-45,SI20UBN2-30,SI20UTG2-30,SI20UMX2-82,SI20UEY2-85,SI20UQY2-94,SI20UQY2-102,SI20UQZ2-98,SI20UQZ2-106,SI20UQY2-86,SI20UQX2-30,SI20UBY2-46,SI20UBY2-54,SI20UBY2-62,SI20USX2-30,SI20UHX2-30,SI20UGU2-56,SI20UGU2-64,SI20UZJ2-86,SI20UBZ2-86,SI--UBA2-110",62,,70,,14,,16,,32,624,"HK1003 -Blackpoint D2 - Rev.0E DD30092021"
1-2777,SI--UBA2-97,"BD - CONSENT LETTER - DESIGN UBA7910/7920",5121,"HK1003-Rev.0E-3",TT_Task,"55902",-,-,-,0,TK_NotStart,09/12/2021,,05/01/2022,,"SI--UBA2-96 FS,SI--UBA2-96 SS","SI--UBA2-96,SI--UBA2-96","SI--UBA2A75 FS,SI--UBA2A76 FS","SI--UBA2A75,SI--UBA2A76",70,,74,,16,,17,,41,1712,"HK1003 -Blackpoint D2 - Rev.0E DD30092021"
1-2778,SI20UVM2-77,"CLIENT - REVIEW - DETAIL DESIGN CONCRETE - 20UVM01",5121,"HK1003-Rev.0E-3",TT_Task,"55902",-,-,-,100,TK_Complete,02/08/2021,02/08/2021,26/08/2021,26/08/2021,"SI20UVM2-76 FS,SI--UHA2-80 SS,SI20UVM2-70 FS,SI20UVM2-50 FS","SI20UVM2-76,SI--UHA2-80,SI20UVM2-70,SI20UVM2-50","SI20UVM2-80 SS","SI20UVM2-80",52,52,55,55,12,12,13,13,24,,"HK1003 -Blackpoint D2 - Rev.0E DD30092021"
1-2779,SI20UVM2-80,"BD - SUBMISSION & APPROVAL - DETAIL DESIGN CONCRETE - 20UVM01",5121,"HK1003-Rev.0E-3",TT_Task,"55902",-,-,-,98,TK_Active,02/08/2021,02/08/2021,30/09/2021,,"SI20UVM2-77 SS,SI--UHA2-79 SS,SI20UVM2B04 FS,SI-P221-120& FS","SI20UVM2-77,SI--UHA2-79,SI20UVM2B04,SI-P221-120&","SI20UVM2-85 FS,SI20UVM2-86 FS","SI20UVM2-85,SI20UVM2-86",52,52,60,,12,12,14,,24,2352,"HK1003 -Blackpoint D2 - Rev.0E DD30092021"
1-2780,SI20UVM2-85,"BD - CONSENT LETTER - DESIGN 20UVM01",5121,"HK1003-Rev.0E-3",TT_Task,"55902",-,-,-,0,TK_NotStart,01/10/2021,,28/10/2021,,"SI20UVM2-80 FS","SI20UVM2-80","SI20UVM2-75 FS,SI20UVM2-87 FS","SI20UVM2-75,SI20UVM2-87",60,,64,,14,,15,,31,2352,"HK1003 -Blackpoint D2 - Rev.0E DD30092021"
1-2781,SI20UVM2-76,"BASIC DESIGN CONCRETE 20UVM01",5121,"HK1003-Rev.0E-3",TT_Task,"55902",-,-,-,100,TK_Complete,21/05/2021,21/05/2021,17/06/2021,17/06/2021,"SI20UVM2-60 FS,SI--UM-2-35 FS","SI20UVM2-60,SI--UM-2-35","SI20UVM2-77 FS,SI20UVM2-70 FS","SI20UVM2-77,SI20UVM2-70",41,41,45,45,9,9,10,10,13,,"HK1003 -Blackpoint D2 - Rev.0E DD30092021"
1-2782,SI20PAB6A17,"ERECTION, NDT, PT / VALVES (MECHANICAL) 20PAB01 TO PAC PUMPS",5121,"HK1003-Rev.0E-3",TT_Task,"55902",-,-,-,0,TK_NotStart,24/07/2022,,03/09/2022,,"SI20PAC6B40 FS,SI20--P6A00& FS,SI20PAB5-105 FS,SI---1P6A05 FS","SI20PAC6B40,SI20--P6A00&,SI20PAB5-105,SI---1P6A05","SI20PAB7A15 FS,SI20PA-6H70 FS,SI20PAB8-05 FS,SI20-6-16# FF,SI20-6-16# SS","SI20PAB7A15,SI20PA-6H70,SI20PAB8-05,SI20-6-16#,SI20-6-16#",103,,109,,24,,25,,75,1600,"HK1003 -Blackpoint D2 - Rev.0E DD30092021"
1-2783,SI--UBA2-101,"CLIENT - REVIEW - DETAIL DESIGN CONCRETE - 20UBA8110/20",5121,"HK1003-Rev.0E-3",TT_Task,"55902",-,-,-,0,TK_NotStart,27/10/2021,,20/11/2021,,"SI20UBA2C61 FS,SI20UBA2C50 FS","SI20UBA2C61,SI20UBA2C50","SI--UBA2-102 SS","SI--UBA2-102",64,,68,,15,,15,,36,1144,"HK1003 -Blackpoint D2 - Rev.0E DD30092021"
1-2784,SI--UBA2-102,"BD - SUBMISSION & APPROVAL - DETAIL DESIGN CONCRETE - 20UBA8110/20",5121,"HK1003-Rev.0E-3",TT_Task,"55902",-,-,-,0,TK_NotStart,14/11/2021,,12/01/2022,,"SI--UBA2-101 SS,SI--UBA2-93 SS,SI20UBA2-30 SS,SI-P221-220& FS,SI--UBA2-96 SS,SI20UBA2C-40 SS,SI--2222-141 FS,SI--2222-141 FF","SI--UBA2-101,SI--UBA2-93,SI20UBA2-30,SI-P221-220&,SI--UBA2-96,SI20UBA2C-40,SI--2222-141,SI--2222-141","SI--UBA2-103 FS,SI--UBA2-104 FS,SI20UBA2C79 FS","SI--UBA2-103,SI--UBA2-104,SI20UBA2C79",67,,75,,15,,17,,38,1144,"HK1003 -Blackpoint D2 - Rev.0E DD30092021"
1-2785,SI--UBA2-103,"BD - CONSENT LETTER - DESIGN 20UBA8110/20",5121,"HK1003-Rev.0E-3",TT_Task,"55902",-,-,-,0,TK_NotStart,13/01/2022,,09/02/2022,,"SI--UBA2-102 FS","SI--UBA2-102","SI20UBA2G75 FS,SI20UBA2G79 FS","SI20UBA2G75,SI20UBA2G79",75,,79,,17,,18,,45,1800,"HK1003 -Blackpoint D2 - Rev.0E DD30092021"
1-2786,SI20UBA3K81,"(OTD-OS) ON SITE ELECTRICAL MODULES 20UBA8110/20",5121,"HK1003-Rev.0E-3",TT_FinMile,"55902",-,-,-,0,TK_NotStart,17/11/2022,,17/11/2022,,"SI20UBA4K25 FS","SI20UBA4K25","SI20UBA7-16 FS,SI20UBA7-27 FS","SI20UBA7-16,SI20UBA7-27",119,,119,,27,,27,,85,80,"HK1003 -Blackpoint D2 - Rev.0E DD30092021"
1-2787,SI--UBA2-104,"BD - SUBMISSION & APPROVAL - STEEL STRUCTURE 20UBA8110/20",5121,"HK1003-Rev.0E-3",TT_Task,"55902",-,-,-,0,TK_NotStart,13/01/2022,,13/03/2022,,"SI--UBA2D70 FS,SI-P221-535& FS,SI--UBA2-106 SS,SI--UBA2-102 FS,SI--2222-141 FS,SI--2222-143& FS","SI--UBA2D70,SI-P221-535&,SI--UBA2-106,SI--UBA2-102,SI--2222-141,SI--2222-143&","SI--UBA2-105 FS","SI--UBA2-105",75,,84,,17,,19,,45,1144,"HK1003 -Blackpoint D2 - Rev.0E DD30092021"
1-2788,SI--UBA2-105,"BD - CONSENT LETTER - STEEL STRUCTURE 20UBA8110/20",5121,"HK1003-Rev.0E-3",TT_Task,"55902",-,-,-,0,TK_NotStart,14/03/2022,,10/04/2022,,"SI--UBA2-104 FS","SI--UBA2-104","SI--UBA2H75 FS","SI--UBA2H75",84,,88,,19,,20,,52,1144,"HK1003 -Blackpoint D2 - Rev.0E DD30092021"
1-2789,SI20UBD2E90,"CLIENT - REVIEW - DETAIL DESIGN CONCRETE - 20UBD03/04",5121,"HK1003-Rev.0E-3",TT_Task,"55902",-,-,-,0,TK_NotStart,16/10/2021,,09/11/2021,,"SI20UBD2E73 FS","SI20UBD2E73","SI20UBD2E91 SS","SI20UBD2E91",63,,66,,14,,15,,34,1832,"HK1003 -Blackpoint D2 - Rev.0E DD30092021"
1-2790,SI20UBD2E91,"BD - SUBMISSION & APPROVAL - DETAIL DESIGN CONCRETE - 20UBD03/04",5121,"HK1003-Rev.0E-3",TT_Task,"55902",-,-,-,0,TK_NotStart,16/10/2021,,14/12/2021,,"SI20UBD2E90 SS,SI-P221-225& FS,SI--UBA2-96 SS","SI20UBD2E90,SI-P221-225&,SI--UBA2-96","SI20UBD2E92 FS,SI20UBD2C-84 SS,SI20UBD2E93 FS","SI20UBD2E92,SI20UBD2C-84,SI20UBD2E93",63,,71,,14,,16,,34,1832,"HK1003 -Blackpoint D2 - Rev.0E DD30092021"
1-2791,SI20UBD2E92,"BD - CONSENT LETTER - DESIGN 20UBD03/04",5121,"HK1003-Rev.0E-3",TT_Task,"55902",-,-,-,0,TK_NotStart,15/12/2021,,11/01/2022,,"SI20UBD2E91 FS","SI20UBD2E91","SI20UBD2E75 FS,SI20UBD2E94 FS","SI20UBD2E75,SI20UBD2E94",71,,75,,16,,17,,42,2232,"HK1003 -Blackpoint D2 - Rev.0E DD30092021"
1-2792,SI20UBA2C78,"BASIC BUILDING DESIGN INCL. 3D MODEL 20UBD03/04",5121,"HK1003-Rev.0E-3",TT_Task,"55902",-,-,-,100,TK_Complete,30/07/2021,30/07/2021,03/09/2021,03/09/2021,"SI20UBD2E60 FS","SI20UBD2E60","SI20UBD2E73 FS","SI20UBD2E73",51,51,56,56,12,12,13,13,23,,"HK1003 -Blackpoint D2 - Rev.0E DD30092021"
1-2793,SI20UBA7-27,"PLACING ELECTRICAL MODULES 20UBA8110/20",5121,"HK1003-Rev.0E-3",TT_Task,"55902",-,-,-,0,TK_NotStart,18/11/2022,,20/11/2022,,"SI20UBA3K81 FS,SI20UBA5-93 FS,SI20BZP7-85 FS,SI--UBA2K05 FS,SI20PAD6-38 SS","SI20UBA3K81,SI20UBA5-93,SI20BZP7-85,SI--UBA2K05,SI20PAD6-38","SI20UBA7-16 FS,SI20UBA5-95 FS,SI--BHT7-20 FS,SI--BHT7-15 FS","SI20UBA7-16,SI20UBA5-95,SI--BHT7-20,SI--BHT7-15",119,,120,,27,,28,,85,80,"HK1003 -Blackpoint D2 - Rev.0E DD30092021"
1-2794,SI20PAB5-35,"PIPING TRENCH / CHANNEL AVAILABLE FROM CLIENT 20PAB01/02",5121,"HK1003-Rev.0E-3",TT_Mile,"55902",-,-,-,100,TK_Complete,01/07/2021,01/07/2021,01/07/2021,01/07/2021,"SI-----5-20 FS","SI-----5-20","SI20PAB5-60 FS,SI20PAB5-85 FS","SI20PAB5-60,SI20PAB5-85",47,47,47,47,11,11,11,11,20,,"HK1003 -Blackpoint D2 - Rev.0E DD30092021"
1-2795,SI20PAB4-55,"TRANSPORT PIPING SYSTEM (OUTSIDE) 20PAB (FIRST DELIVERY)",5121,"HK1003-Rev.0E-3",TT_Task,"55902",-,-,-,100,TK_Complete,27/05/2021,27/05/2021,07/07/2021,07/07/2021,"SI20PAB4-50 FS","SI20PAB4-50","SI20PAB5-70 FS","SI20PAB5-70",42,42,48,48,9,9,11,11,14,,"HK1003 -Blackpoint D2 - Rev.0E DD30092021"
1-2796,SI20PAB5-85,"ERECTION PIPING SYSTEM (OUTSIDE) 20PAB20(NORTH/EAST OF 20UMC EAST OF 20URD)-OVERALL",5121,"HK1003-Rev.0E-3",TT_Task,"55902",-,-,-,56,TK_Active,19/07/2021,19/07/2021,25/11/2021,,"SI20PAB5-35 FS,SI20PAB5-70 FS,SI20PAB5-116 FF,SI20PAB5-85.36 FS,SI20PAB5-85.27 SS,SI20PAB5-85.24 FF","SI20PAB5-35,SI20PAB5-70,SI20PAB5-116,SI20PAB5-85.36,SI20PAB5-85.27,SI20PAB5-85.24","SI20PAB5-100 FS,SI20PAB5-65# SS,SI20PAB5-65# FF","SI20PAB5-100,SI20PAB5-65#,SI20PAB5-65#",50,50,68,,11,11,16,,22,920,"HK1003 -Blackpoint D2 - Rev.0E DD30092021"
1-2797,SI20PAB5-90,"PRESSURE TEST 20PAB41-PIPES OUTSIDE",5121,"HK1003-Rev.0E-3",TT_Task,"55902",-,-,-,0,TK_NotStart,23/11/2021,,24/11/2021,,"SI20PAB5-60.22 FS","SI20PAB5-60.22","SI20PAB5-105 FS,SI20PAB5-110 FS,SI20PAB8-05 FS,SI20PAB5-65# FF","SI20PAB5-105,SI20PAB5-110,SI20PAB8-05,SI20PAB5-65#",68,,68,,15,,16,,39,944,"HK1003 -Blackpoint D2 - Rev.0E DD30092021"
1-2798,SI20PAD8-56,"FILLING OF COOLING WATER SYSTEM PAB",5121,"HK1003-Rev.0E-3",TT_Task,"55902",-,-,-,0,TK_NotStart,04/06/2023,,10/06/2023,,"SI20PA-6H70 FS,SI20PAB8-05 FS,SI20PAD8-45 SS,SI20UPY6M11 FS","SI20PA-6H70,SI20PAB8-05,SI20PAD8-45,SI20UPY6M11","SI20MB-9-15 FS","SI20MB-9-15",148,,149,,34,,34,,98,160,"HK1003 -Blackpoint D2 - Rev.0E DD30092021"
1-2799,SI20UMY2-50,"CLIENT - REVIEW - DETAIL DESIGN CONCRETE - 20ULY/UMY",5121,"HK1003-Rev.0E-3",TT_Task,"55902",-,-,-,100,TK_Complete,14/07/2021,14/07/2021,07/08/2021,07/08/2021,"SI--UMY2-30 FS,SI--UMY2-78 FS","SI--UMY2-30,SI--UMY2-78","SI20UMY2-55 SS,SI20UMY2-55 FF","SI20UMY2-55,SI20UMY2-55",49,49,53,53,11,11,12,12,21,,"HK1003 -Blackpoint D2 - Rev.0E DD30092021"
1-2800,SI20UMY2-55,"BD - SUBMISSION & APPROVAL - DETAIL DESIGN CONCRETE - 20ULY/UMY",5121,"HK1003-Rev.0E-3",TT_Task,"55902",-,-,-,98,TK_Active,02/08/2021,02/08/2021,30/09/2021,,"SI20UMY2-50 SS,SI20UMY2-50 FF,SI20UMY2B04 FS,SI-P221-310& FS","SI20UMY2-50,SI20UMY2-50,SI20UMY2B04,SI-P221-310&","SI20UMY2-60 FS,SI--UMY2-79 FS","SI20UMY2-60,SI--UMY2-79",52,52,60,,12,12,14,,24,424,"HK1003 -Blackpoint D2 - Rev.0E DD30092021"
1-2801,SI20UMY2-60,"BD - CONSENT LETTER - DESIGN  20ULY/UMY",5121,"HK1003-Rev.0E-3",TT_Task,"55902",-,-,-,0,TK_NotStart,01/10/2021,,28/10/2021,,"SI20UMY2-55 FS","SI20UMY2-55","SI--UMY2-75 FS,SI--UMY2-80 FS","SI--UMY2-75,SI--UMY2-80",60,,64,,14,,15,,31,424,"HK1003 -Blackpoint D2 - Rev.0E DD30092021"
1-2802,SI20MBR2B64,"BD - SUBMISSION & APPROVAL - EXHAUST DIFFUSER FRAME 20MBR",5121,"HK1003-Rev.0E-3",TT_Task,"55902",-,-,-,100,TK_Complete,14/07/2021,14/07/2021,11/09/2021,11/09/2021,"SI-----1-05 FS,SP20MBR2A80 FS,SI-P221-425& FS,SP20MBR2A85 FS,SI20MBR2B66 FS","SI-----1-05,SP20MBR2A80,SI-P221-425&,SP20MBR2A85,SI20MBR2B66","SI20MBR2B65 FF,SI20MBR2B65 FS,SP20MBR3A25 SS","SI20MBR2B65,SI20MBR2B65,SP20MBR3A25",49,49,58,58,11,11,13,13,21,,"HK1003 -Blackpoint D2 - Rev.0E DD30092021"
1-2803,SI20MBR2B65,"BD - APPROVAL AWARD EXHAUST DIFFUSER FRAME 20MBR",5121,"HK1003-Rev.0E-3",TT_Task,"55902",-,-,-,64,TK_Active,12/09/2021,12/09/2021,09/10/2021,,"SI20MBR2B64 FF,SI20MBR2B64 FS","SI20MBR2B64,SI20MBR2B64","SI--UMX2-75 FS,SP20MBR3-70 FS","SI--UMX2-75,SP20MBR3-70",58,58,62,,13,13,14,,29,568,"HK1003 -Blackpoint D2 - Rev.0E DD30092021"
1-2804,SI20MKA6-82,"ALIGNMENT OF GENERATOR TO GAS TURBINE MKA",5121,"HK1003-Rev.0E-3",TT_Task,"55902",-,-,-,0,TK_NotStart,28/07/2022,,02/08/2022,,"SI20MKA6-12 FS","SI20MKA6-12","SI20MKA6-32 FS,SI20MB-6-25 FF,SI20MKA6-83 FS","SI20MKA6-32,SI20MB-6-25,SI20MKA6-83",103,,104,,24,,24,,75,368,"HK1003 -Blackpoint D2 - Rev.0E DD30092021"
1-2805,SI20UBH2-93,"CLIENT - REVIEW - DETAIL DESIGN CONCRETE - 20UBH01",5121,"HK1003-Rev.0E-3",TT_Task,"55902",-,-,-,100,TK_Complete,23/07/2021,23/07/2021,16/08/2021,16/08/2021,"SI20UBH2-80 FS,SI20UBH2-79 FS","SI20UBH2-80,SI20UBH2-79","SI20UBH2-94 FS,SI20UBH2-90 SS","SI20UBH2-94,SI20UBH2-90",50,50,54,54,11,11,12,12,22,,"HK1003 -Blackpoint D2 - Rev.0E DD30092021"
1-2806,SI20UBH2-94,"BD - SUBMISSION & APPROVAL  - 20UBH01",5121,"HK1003-Rev.0E-3",TT_Task,"55902",-,-,-,73,TK_Active,17/08/2021,17/08/2021,15/10/2021,,"SI20UBH2-93 FS,SI-P221-440& FS","SI20UBH2-93,SI-P221-440&","SI20UBH2-95 FS,SI20UBH2-91 SS,SI20UBH2-96 FS","SI20UBH2-95,SI20UBH2-91,SI20UBH2-96",54,54,62,,12,12,14,,26,2144,"HK1003 -Blackpoint D2 - Rev.0E DD30092021"
1-2807,SI20UBH2-95,"BD - CONSENT LETTER - 20UBH01",5121,"HK1003-Rev.0E-3",TT_Task,"55902",-,-,-,0,TK_NotStart,16/10/2021,,12/11/2021,,"SI20UBH2-94 FS","SI20UBH2-94","SI20UBH2-75 FS,SI20UBH2-97 FS","SI20UBH2-75,SI20UBH2-97",63,,66,,14,,15,,34,2144,"HK1003 -Blackpoint D2 - Rev.0E DD30092021"
1-2808,SI20UBH2-81,"BASIC DESIGN INCL. 3D MODEL, OIL COLLECTING PIT / OIL SEPARATOR 20UBH01",5121,"HK1003-Rev.0E-3",TT_Task,"55902",-,-,-,100,TK_Complete,28/05/2021,28/05/2021,17/06/2021,17/06/2021,"SI20UBH2-60 FS","SI20UBH2-60","SI20UBH2-80 FS,SI-P222-148 FS","SI20UBH2-80,SI-P222-148",42,42,45,45,10,10,10,10,14,,"HK1003 -Blackpoint D2 - Rev.0E DD30092021"
1-2809,SI20EKG6H17,"ERECTION, NDT, PT (PT & PIGGING) PIPES / VALVES 20EKG (00UEN03/04 - 20UEN VIA UEYxx)",5121,"HK1003-Rev.0E-3",TT_Task,"55902",-,-,-,0,TK_NotStart,29/09/2022,,25/02/2023,,"SI20EK-6-21 FF,SI20EK-6-40 FF,SI20UMY6M71 FS,SI20UEY6-115 FS,SI20UEY6-95 FS","SI20EK-6-21,SI20EK-6-40,SI20UMY6M71,SI20UEY6-115,SI20UEY6-95","SI20UEN5D15 FS,SI20-6-16# FF,SI20-6-16# SS","SI20UEN5D15,SI20-6-16#,SI20-6-16#",112,,134,,26,,31,,82,496,"HK1003 -Blackpoint D2 - Rev.0E DD30092021"
1-2810,SI20UEY2-55,"BD - SUBMISSION & APPROVAL - DETAIL DESIGN CONCRETE 20UEY03-05",5121,"HK1003-Rev.0E-3",TT_Task,"55902",-,-,-,0,TK_NotStart,10/10/2021,,08/12/2021,,"SI20UEY2-52 SS,SI-P221-280& FS,SI--UBA2-96 SS","SI20UEY2-52,SI-P221-280&,SI--UBA2-96","SI20UEY2-62 FS,SI20UEY2-89 FS","SI20UEY2-62,SI20UEY2-89",62,,70,,14,,16,,32,1048,"HK1003 -Blackpoint D2 - Rev.0E DD30092021"
1-2811,SI20UEY2-52,"CLIENT - REVIEW - DETAIL DESIGN CONCRETE 20UEY03-05",5121,"HK1003-Rev.0E-3",TT_Task,"55902",-,-,-,0,TK_NotStart,10/10/2021,,03/11/2021,,"SI20UEY2-70 FS,SI20UEY2-50 FS","SI20UEY2-70,SI20UEY2-50","SI20UEY2-55 SS","SI20UEY2-55",62,,65,,14,,15,,32,1048,"HK1003 -Blackpoint D2 - Rev.0E DD30092021"
1-2812,SI20UEY2-62,"BD - CONSENT LETTER DETAIL DESIGN CONCRETE 20UEY03-05",5121,"HK1003-Rev.0E-3",TT_Task,"55902",-,-,-,0,TK_NotStart,09/12/2021,,05/01/2022,,"SI20UEY2-55 FS","SI20UEY2-55","SI20UEY2-75 FS,SI20UEY2-90 FS","SI20UEY2-75,SI20UEY2-90",70,,74,,16,,17,,41,1048,"HK1003 -Blackpoint D2 - Rev.0E DD30092021"
1-2813,SI20UEY2-30,"BASIC DESIGN / BASIC BUILDING DESIGN INCL. 3D MODEL 20UEY01",5121,"HK1003-Rev.0E-3",TT_Task,"55902",-,-,-,100,TK_Complete,11/05/2021,11/05/2021,07/06/2021,07/06/2021,"SI20UEY2-35 FS","SI20UEY2-35","SI20UEY2-45 FS","SI20UEY2-45",40,40,44,44,9,9,10,10,12,,"HK1003 -Blackpoint D2 - Rev.0E DD30092021"
1-2814,SI20UEY2-35,"(MS3) CONCRETE STRUCTURE FINAL DIMENSIONS, LOADS AVAILABLE 20UEY01",5121,"HK1003-Rev.0E-3",TT_FinMile,"55902",-,-,-,100,TK_Complete,11/05/2021,11/05/2021,11/05/2021,11/05/2021,"SI-----1-05 FS,SI-----2F60 FS","SI-----1-05,SI-----2F60","SI20UEY2-30 FS","SI20UEY2-30",40,40,40,40,9,9,9,9,12,,"HK1003 -Blackpoint D2 - Rev.0E DD30092021"
1-2815,SI20UEY5-100,"(RFE) FOUNDATION 20UEY01 PART 1",5121,"HK1003-Rev.0E-3",TT_FinMile,"55902",-,-,-,0,TK_NotStart,03/01/2022,,03/01/2022,,"SI20UEY5-90 FS,SI20UHA5-45 FF","SI20UEY5-90,SI20UHA5-45","SI20EKG6H15 FS,SI20UEY6-60 FS,SI20UEY6-65 FS,SI20UEY6-80 FS,SI20UEY6-15 FS,SI20UEY6-50 FS,SI20UEY6-70 FS,SI20UEY6-55 FS,SI20UEY6-15 FF,SI20UEY5-105 FS,SI20HB-6A17 FS,SI20BZP7-197 FS,SI20UEY5-101 FS","SI20EKG6H15,SI20UEY6-60,SI20UEY6-65,SI20UEY6-80,SI20UEY6-15,SI20UEY6-50,SI20UEY6-70,SI20UEY6-55,SI20UEY6-15,SI20UEY5-105,SI20HB-6A17,SI20BZP7-197,SI20UEY5-101",74,,74,,17,,17,,44,160,"HK1003 -Blackpoint D2 - Rev.0E DD30092021"
1-2816,SI20UEY5-90,"CONSTRUCTION FOUNDATION 20UEY01 PART 1",5121,"HK1003-Rev.0E-3",TT_Task,"55902",-,-,-,0,TK_NotStart,30/11/2021,,03/01/2022,,"SI20UEY5-95 FS","SI20UEY5-95","SI20UEY5-100 FS","SI20UEY5-100",69,,74,,16,,17,,40,160,"HK1003 -Blackpoint D2 - Rev.0E DD30092021"
1-2817,SI20UEY5-95,"(H) START PLACING FORMWORK 20UEY01 PART 1",5121,"HK1003-Rev.0E-3",TT_Mile,"55902",-,-,-,0,TK_NotStart,30/11/2021,,30/11/2021,,"SI20UEY2-80 SS,SI20UEY5-85 FS,SI20UEY2-92 FS","SI20UEY2-80,SI20UEY5-85,SI20UEY2-92","SI20UEY5-90 FS","SI20UEY5-90",69,,69,,16,,16,,40,160,"HK1003 -Blackpoint D2 - Rev.0E DD30092021"
1-2818,SI20UEY5-85,"WORK PREPARATION / EXCAVATION / PILE TRIMMING / PLATE WELDING 20UEY01 PART 1",5121,"HK1003-Rev.0E-3",TT_Task,"55902",-,-,-,0,TK_NotStart,16/11/2021,,29/11/2021,,"SI-----5-21& FS,SI-----5-20 FS,SI20UEY2-80 FS,SI-P222-84 FS,SI-P222-128 FS,SI20UEY2-94 FS,SI20UMC5A25 FS","SI-----5-21&,SI-----5-20,SI20UEY2-80,SI-P222-84,SI-P222-128,SI20UEY2-94,SI20UMC5A25","SI20UEY5-95 FS,SI-P222-131# FF,SI-P222-131# SS","SI20UEY5-95,SI-P222-131#,SI-P222-131#",67,,69,,15,,16,,38,160,"HK1003 -Blackpoint D2 - Rev.0E DD30092021"
1-2819,SI20UEY2-64,"PREPARATION FOUNDATION GROUNDING DWGS 20UEY01",5121,"HK1003-Rev.0E-3",TT_Task,"55902",-,-,-,100,TK_Complete,13/07/2021,13/07/2021,26/07/2021,26/07/2021,"SI20UEY2-45 FF","SI20UEY2-45","SI20UEY2-80 FS","SI20UEY2-80",49,49,51,51,11,11,11,11,21,,"HK1003 -Blackpoint D2 - Rev.0E DD30092021"
1-2820,SI20UEY2-45,"DETAIL DESIGN CONCRETE STRUCTURE 20UEY01",5121,"HK1003-Rev.0E-3",TT_Task,"55902",-,-,-,100,TK_Complete,08/06/2021,08/06/2021,26/07/2021,26/07/2021,"SI20UEY2-30 FS,SI20UMC2B20 FF","SI20UEY2-30,SI20UMC2B20","SI20UEY2-64 FF,SI20UEY2-80 FS,SI20UEY2-65 FS","SI20UEY2-64,SI20UEY2-80,SI20UEY2-65",44,44,51,51,10,10,11,11,16,,"HK1003 -Blackpoint D2 - Rev.0E DD30092021"
1-2821,SI20UEY2-80,"(F) CONCRETE STRUCTURE DWGS ON SITE RELEASED FOR EXECUTION 20UEY01",5121,"HK1003-Rev.0E-3",TT_FinMile,"55902",-,-,-,0,TK_NotStart,15/11/2021,,15/11/2021,,"SI20UEY2-45 FS,SI20UEY2-64 FS,SI20UEY2-79 FS","SI20UEY2-45,SI20UEY2-64,SI20UEY2-79","SI20UEY5-95 SS,SI20UEY5-85 FS,SI20UEY5-105 FS","SI20UEY5-95,SI20UEY5-85,SI20UEY5-105",67,,67,,15,,15,,38,160,"HK1003 -Blackpoint D2 - Rev.0E DD30092021"
1-2822,SI20UEY2-66,"BD - SUBMISSION & APPROVAL - DETAIL DESIGN CONCRETE 20UEY01",5121,"HK1003-Rev.0E-3",TT_Task,"55902",-,-,-,100,TK_Complete,27/07/2021,27/07/2021,24/09/2021,24/09/2021,"SI20UEY2-65 SS,SI20UEY2B04 FS,SI-P221-300& FS","SI20UEY2-65,SI20UEY2B04,SI-P221-300&","SI20UEY2-79 FS,SI20UEY2-94 FS","SI20UEY2-79,SI20UEY2-94",51,51,59,59,12,12,13,13,23,,"HK1003 -Blackpoint D2 - Rev.0E DD30092021"
1-2823,SI20UEY2-65,"CLIENT - REVIEW - DETAIL DESIGN CONCRETE 20UEY01",5121,"HK1003-Rev.0E-3",TT_Task,"55902",-,-,-,100,TK_Complete,27/07/2021,27/07/2021,20/08/2021,20/08/2021,"SI20UEY2-45 FS","SI20UEY2-45","SI20UEY2-66 SS","SI20UEY2-66",51,51,54,54,12,12,12,12,23,,"HK1003 -Blackpoint D2 - Rev.0E DD30092021"
1-2824,SI20UEY2-79,"BD - CONSENT LETTER DETAIL DESIGN CONCRETE 20UEY01",5121,"HK1003-Rev.0E-3",TT_Task,"55902",-,-,-,18,TK_Active,25/09/2021,25/09/2021,22/10/2021,,"SI20UEY2-66 FS","SI20UEY2-66","SI20UEY2-80 FS,SI20UEY2-92 FS","SI20UEY2-80,SI20UEY2-92",60,60,63,,14,14,14,,30,352,"HK1003 -Blackpoint D2 - Rev.0E DD30092021"
1-2825,SI20UEY4-115,"LOGISTICS AND CUSTOMS PREPARATION MODULE 20UEY01/02Y",5121,"HK1003-Rev.0E-3",TT_Task,"55902",-,-,-,0,TK_NotStart,05/04/2022,,02/05/2022,,"SI20UEY3-110 FS","SI20UEY3-110","SI20UEY4-120 FS","SI20UEY4-120",87,,91,,20,,21,,56,1344,"HK1003 -Blackpoint D2 - Rev.0E DD30092021"
1-2826,SI20UEY3-110,"TIMES OF COMPLETION (FINAL DATA IN KANLOG) MODULE 20UEY01/02Y",5121,"HK1003-Rev.0E-3",TT_FinMile,"55902",-,-,-,0,TK_NotStart,05/04/2022,,05/04/2022,,"SI20UEY3-105 FS,SI20---3M72 FS","SI20UEY3-105,SI20---3M72","SI20UEY4-115 FS","SI20UEY4-115",87,,87,,20,,20,,56,1344,"HK1003 -Blackpoint D2 - Rev.0E DD30092021"
1-2827,SI20UEY4-120,"(RFS) READY FOR SHIPMENT MODULE 20UEY01/02Y",5121,"HK1003-Rev.0E-3",TT_FinMile,"55902",-,-,-,0,TK_NotStart,02/05/2022,,02/05/2022,,"SI20UEY4-115 FS","SI20UEY4-115","SI20UEY4-125 FS","SI20UEY4-125",91,,91,,21,,21,,61,1344,"HK1003 -Blackpoint D2 - Rev.0E DD30092021"
1-2828,SI--2M-11,"BD - SUBMISSION & APPROVAL - SUPPORTING FRAME FOR MODULES LOT 1 (UMY00Y/ULY00Y)",5121,"HK1003-Rev.0E-3",TT_Task,"55902",-,-,-,100,TK_Complete,17/06/2021,17/06/2021,01/09/2021,01/09/2021,"SI-----3M64 FS,SI20UMY2-85 FS,SI-P221-395& FS,SI-P221-396& FS,SI-P221-401& FS","SI-----3M64,SI20UMY2-85,SI-P221-395&,SI-P221-396&,SI-P221-401&","SI--2M-31 FS,SI20---3M87 FS,SI20-1P340 FS,SI20---3M06 FF","SI--2M-31,SI20---3M87,SI20-1P340,SI20---3M06",45,45,56,56,10,10,13,13,17,,"HK1003 -Blackpoint D2 - Rev.0E DD30092021"
1-2829,SI--2M-31,"BD - CONSENT LETTER - SUPPORTING FRAME FOR MODULES LOT 1",5121,"HK1003-Rev.0E-3",TT_Task,"55902",-,-,-,100,TK_Complete,02/09/2021,02/09/2021,29/09/2021,29/09/2021,"SI--2M-11 FS","SI--2M-11","SI20-1P340 FF,SI20---3M07 FF","SI20-1P340,SI20---3M07",56,56,60,60,13,13,14,14,28,,"HK1003 -Blackpoint D2 - Rev.0E DD30092021"
1-2830,SI20HB-6-48,"INSTALL PIPING SUPPORTS HRSG20",5121,"HK1003-Rev.0E-3",TT_Task,"55902",-,-,-,0,TK_NotStart,22/04/2022,,17/03/2023,,"SI20HA-6A48 FF,SI20HA-6C22 SS","SI20HA-6A48,SI20HA-6C22","SI20HB-6-14 SS,SI20HB-6-20 FF,SI20HA-6A16# SS,SI20HSJ6-16 SS","SI20HB-6-14,SI20HB-6-20,SI20HA-6A16#,SI20HSJ6-16",89,,136,,20,,31,,59,0,"HK1003 -Blackpoint D2 - Rev.0E DD30092021"
1-2831,SI20HB-8-26,"ERECTION DRUM END ENCLOSURE / CANOPY HRSG20",5121,"HK1003-Rev.0E-3",TT_Task,"55902",-,-,-,0,TK_NotStart,04/08/2022,,12/10/2022,,"SI20HA-6D18 FS,SI20HB-6-13 SS","SI20HA-6D18,SI20HB-6-13","SI20HA-6-20 FS","SI20HA-6-20",104,,114,,24,,26,,76,1080,"HK1003 -Blackpoint D2 - Rev.0E DD30092021"
1-2832,SI20LCL6B41,"PLACING BOILER BLOWDOWN PUMP 20LCL",5121,"HK1003-Rev.0E-3",TT_Task,"55902",-,-,-,0,TK_NotStart,22/07/2022,,22/07/2022,,"SI20LCL4B40 FS,SI20UHA5-45 FS,SI20HA-6C22 FS,SI20HA-6D17 FS,SI20HB-6-14 SS","SI20LCL4B40,SI20UHA5-45,SI20HA-6C22,SI20HA-6D17,SI20HB-6-14","SI20LCL6B15 FS","SI20LCL6B15",102,,102,,24,,24,,74,336,"HK1003 -Blackpoint D2 - Rev.0E DD30092021"
1-2833,SI20LBH6D16,"PLACING BOILER BLOW DOWN TANK 20LBH",5121,"HK1003-Rev.0E-3",TT_Task,"55902",-,-,-,0,TK_NotStart,09/04/2022,,09/04/2022,,"SI20LBH4D40 FS,SI20UHA5-45 FS","SI20LBH4D40,SI20UHA5-45","SI20LBH6D15 FS,SI20UMY6M72 FS","SI20LBH6D15,SI20UMY6M72",88,,88,,20,,20,,57,456,"HK1003 -Blackpoint D2 - Rev.0E DD30092021"
1-2834,SI11LBA6H46,"INSULATION PIPES / VALVES FOR STEAM SYSTEM 20LBA10",5121,"HK1003-Rev.0E-3",TT_Task,"55902",-,-,-,0,TK_NotStart,17/02/2023,,23/03/2023,,"SI11LBA6H71 FS,SI20LBA6H71 FS,SI-P2I-15 FS","SI11LBA6H71,SI20LBA6H71,SI-P2I-15","SI20LBA7H16 FF,SI20---6A15# FF","SI20LBA7H16,SI20---6A15#",132,,137,,31,,32,,91,256,"HK1003 -Blackpoint D2 - Rev.0E DD30092021"
1-2835,SI20LBA7H16,"ELECTRICAL ERECTION PIPE / VALVES 20LBA10",5121,"HK1003-Rev.0E-3",TT_Task,"55902",-,-,-,0,TK_NotStart,17/03/2023,,23/03/2023,,"SI11LBA6H46 FF,SI20BZK7E25 FS,SI20BZP7D18 FS,SI20BZP7D19 FS,SI20BZP7-5 FS,SI20BZP7-196 FS,SI20BZP7-174 FS,SI20UMY6M10 FS,SI20UMY6M11 FS,SI20UMY6M12 FS,SI--2227-68 FS,SI--BZP2-05 FS,SI--PEE7-20 FS,SI--BZP4B40 FS","SI11LBA6H46,SI20BZK7E25,SI20BZP7D18,SI20BZP7D19,SI20BZP7-5,SI20BZP7-196,SI20BZP7-174,SI20UMY6M10,SI20UMY6M11,SI20UMY6M12,SI--2227-68,SI--BZP2-05,SI--PEE7-20,SI--BZP4B40","SI20LBG8A10 FS,SI20LBB8J11 FS,SI20LBA8H10 FS,SI20LBA8J10 FS,SI20BZK7D11# FF,SI20BZK7D11# SS","SI20LBG8A10,SI20LBB8J11,SI20LBA8H10,SI20LBA8J10,SI20BZK7D11#,SI20BZK7D11#",136,,137,,31,,32,,93,256,"HK1003 -Blackpoint D2 - Rev.0E DD30092021"
1-2836,SI11LBA6H71,"ERECTION, NDT PIPE / VALVES 11LBA10 (TURBOSET)",5121,"HK1003-Rev.0E-3",TT_Task,"55902",-,-,-,0,TK_NotStart,17/12/2022,,03/02/2023,,"SI20MA-6A35 FS,SI20MAN6E40 FS,SI20MA-6E41 FF,SI---1P6A05 FS,SI20HA-6-40 FS,SI20LBF6H47 FS","SI20MA-6A35,SI20MAN6E40,SI20MA-6E41,SI---1P6A05,SI20HA-6-40,SI20LBF6H47","SI11LBA6H46 FS,SI20UMY6M70 FF,SI20LBA6H71 FS,SI20-6-16# FF,SI20-6-16# SS","SI11LBA6H46,SI20UMY6M70,SI20LBA6H71,SI20-6-16#,SI20-6-16#",124,,130,,28,,30,,87,256,"HK1003 -Blackpoint D2 - Rev.0E DD30092021"
1-2837,SI20LBA6J72,"INSULATION PIPES / VALVES FOR STEAM SYSTEM 11LBA80 (TURBOSET)",5121,"HK1003-Rev.0E-3",TT_Task,"55902",-,-,-,0,TK_NotStart,04/02/2023,,10/03/2023,,"SI20LBA6J71 FS,SI-P2I-15 FS","SI20LBA6J71,SI-P2I-15","SI20LBA7J16 FF,SI20--P6-75 FS,SI20LBG8A10 FS,SI20LBB8J11 FS,SI20LBA8H10 FS,SI20LBA8J10 FS,SI20---6A15# FF","SI20LBA7J16,SI20--P6-75,SI20LBG8A10,SI20LBB8J11,SI20LBA8H10,SI20LBA8J10,SI20---6A15#",131,,135,,30,,31,,89,360,"HK1003 -Blackpoint D2 - Rev.0E DD30092021"
1-2838,SI20LBA6J71,"ERECTION, NDT PIPE / VALVES 11LBA80 (TURBOSET)",5121,"HK1003-Rev.0E-3",TT_Task,"55902",-,-,-,0,TK_NotStart,31/12/2022,,03/02/2023,,"SI20MA-6A35 FS,SI20MAN6E40 FS,SI20HA-6-40 FS,SI---1P6A05 FS,SI20MA-6E41 FF","SI20MA-6A35,SI20MAN6E40,SI20HA-6-40,SI---1P6A05,SI20MA-6E41","SI20LBA6J72 FS,SI20LBA6J45 FS,SI20--P6-73 FF,SI20QC-6H17 FS,SI20LBA6J70 FS,SI--LBA6J15# FF,SI20QU-6H15 FS,SI20LAC8B25 FS,SI20LBA6J70 FF,SI20--P6-77 FF,SI20-6-16# FF,SI20-6-16# SS","SI20LBA6J72,SI20LBA6J45,SI20--P6-73,SI20QC-6H17,SI20LBA6J70,SI--LBA6J15#,SI20QU-6H15,SI20LAC8B25,SI20LBA6J70,SI20--P6-77,SI20-6-16#,SI20-6-16#",126,,130,,29,,30,,88,304,"HK1003 -Blackpoint D2 - Rev.0E DD30092021"
1-2839,SI20LBA7J16,"ELECTRICAL ERECTION / VALVES 11LBA80",5121,"HK1003-Rev.0E-3",TT_Task,"55902",-,-,-,0,TK_NotStart,04/03/2023,,10/03/2023,,"SI20LBA6J72 FF,SI20BZP7D18 FS,SI20BZP7D19 FS,SI20BZP7-5 FS,SI20BZP7-196 FS,SI20BZP7-174 FS,SI20UMY6M10 FS,SI20UMY6M11 FS,SI20UMY6M12 FS,SI--2227-68 FS,SI--BZP2-05 FS,SI--PEE7-20 FS,SI--BZP4B40 FS","SI20LBA6J72,SI20BZP7D18,SI20BZP7D19,SI20BZP7-5,SI20BZP7-196,SI20BZP7-174,SI20UMY6M10,SI20UMY6M11,SI20UMY6M12,SI--2227-68,SI--BZP2-05,SI--PEE7-20,SI--BZP4B40","SI20LBG8A10 FS,SI20LBB8J11 FS,SI20LBA8H10 FS,SI20LBA8J10 FS,SI20BZK7D11# FF,SI20BZK7D11# SS","SI20LBG8A10,SI20LBB8J11,SI20LBA8H10,SI20LBA8J10,SI20BZK7D11#,SI20BZK7D11#",135,,135,,31,,31,,92,360,"HK1003 -Blackpoint D2 - Rev.0E DD30092021"
1-2840,SI20UBG2-50,"CLIENT - REVIEW - DETAIL DESIGN CONCRETE - 20UBG01/02",5121,"HK1003-Rev.0E-3",TT_Task,"55902",-,-,-,0,TK_NotStart,14/11/2021,,08/12/2021,,"SI20UBG2-45 FS,SI--UBF2-88 FS,SI--UBF2-88 FF","SI20UBG2-45,SI--UBF2-88,SI--UBF2-88","SI--UBF2A76 FS,SI20UBG2-55 SS","SI--UBF2A76,SI20UBG2-55",67,,70,,15,,16,,38,1592,"HK1003 -Blackpoint D2 - Rev.0E DD30092021"
1-2841,SI20UBG2-40,"BASIC DESIGN / BASIC BUILDING DESIGN INCL. 3D MODEL 20UBG01/02",5121,"HK1003-Rev.0E-3",TT_Task,"55902",-,-,-,100,TK_Complete,29/08/2021,29/08/2021,25/09/2021,25/09/2021,"SI20UBG2-35 FS","SI20UBG2-35","SI20UBG2-45 FS","SI20UBG2-45",56,56,60,60,13,13,14,14,27,,"HK1003 -Blackpoint D2 - Rev.0E DD30092021"
1-2842,SI20UBG2-35,"(MS3) CONCRETE STRUCTURE FINAL DIMENSIONS, LOADS AVAILABLE 20UBG01/02",5121,"HK1003-Rev.0E-3",TT_FinMile,"55902",-,-,-,100,TK_Complete,28/08/2021,28/08/2021,28/08/2021,28/08/2021,"SI20BAT2-86 FS","SI20BAT2-86","SI20UBG2-40 FS,SI20UBG2-45 FS","SI20UBG2-40,SI20UBG2-45",56,56,56,56,13,13,13,13,27,,"HK1003 -Blackpoint D2 - Rev.0E DD30092021"
1-2843,SI20UBG2-45,"DETAIL DESIGN CONCRETE STRUCTURE 20UBG01/02",5121,"HK1003-Rev.0E-3",TT_Task,"55902",-,-,-,8,TK_Active,26/09/2021,26/09/2021,13/11/2021,,"SI20UBG2-40 FS,SI20UBG2-35 FS","SI20UBG2-40,SI20UBG2-35","SI--UBF2-88 FF,SI--UBF2A76 FS,SI20UBG2-50 FS","SI--UBF2-88,SI--UBF2A76,SI20UBG2-50",60,60,67,,14,14,15,,30,1592,"HK1003 -Blackpoint D2 - Rev.0E DD30092021"
1-2844,SI--UBF2A76,"(F) CONCRETE STRUCTURE DWGS ON SITE RELEASED FOR EXECUTION 20UBG01/02",5121,"HK1003-Rev.0E-3",TT_FinMile,"55902",-,-,-,0,TK_NotStart,08/04/2022,,08/04/2022,,"SI20UBG2-50 FS,SI20UBG2-45 FS,SI--UBF2-88 FS,SI20UBG2-60 FS","SI20UBG2-50,SI20UBG2-45,SI--UBF2-88,SI20UBG2-60","SI20UBD5-05 FS,SI20UBD5-60 FS","SI20UBD5-05,SI20UBD5-60",87,,87,,20,,20,,57,1144,"HK1003 -Blackpoint D2 - Rev.0E DD30092021"
1-2845,SI--UBF2-88,"PREPARATION FOUNDATION GROUNDING DWGS 20UBG01/02",5121,"HK1003-Rev.0E-3",TT_Task,"55902",-,-,-,0,TK_NotStart,31/10/2021,,13/11/2021,,"SI20UBG2-45 FF","SI20UBG2-45","SI--UBF2A76 FS,SI20UBG2-50 FS,SI20UBG2-50 FF","SI--UBF2A76,SI20UBG2-50,SI20UBG2-50",65,,67,,15,,15,,36,1592,"HK1003 -Blackpoint D2 - Rev.0E DD30092021"
1-2846,SI20UBG2-55,"BD - APPROVAL - DETAIL DESIGN CONCRETE  20UBG01/02",5121,"HK1003-Rev.0E-3",TT_Task,"55902",-,-,-,0,TK_NotStart,16/11/2021,,14/01/2022,,"SI20UBG2-50 SS","SI20UBG2-50","SI20UBG2-60 FS","SI20UBG2-60",67,,75,,15,,17,,38,1592,"HK1003 -Blackpoint D2 - Rev.0E DD30092021"
1-2847,SI20UBG2-60,"BD - CONSENT LETTER DESIGN 20UBG01/02",5121,"HK1003-Rev.0E-3",TT_Task,"55902",-,-,-,0,TK_NotStart,15/01/2022,,11/02/2022,,"SI20UBG2-55 FS","SI20UBG2-55","SI--UBF2A76 FS","SI--UBF2A76",76,,79,,17,,18,,45,1592,"HK1003 -Blackpoint D2 - Rev.0E DD30092021"
1-2848,SI20BAT2-86,"(DF) INPUT FOR MS3 MAIN TRANSFORMER MKC / MBJ",5121,"HK1003-Rev.0E-3",TT_FinMile,"55902",-,-,-,100,TK_Complete,28/08/2021,28/08/2021,28/08/2021,28/08/2021,"SP--MKC2-85 FS","SP--MKC2-85","SI20UBG2-35 FS","SI20UBG2-35",56,56,56,56,13,13,13,13,27,,"HK1003 -Blackpoint D2 - Rev.0E DD30092021"
1-2849,SI20MBJ7-11,"PLACING 20MKC02-TRANSFORMER (on UBG03)",5121,"HK1003-Rev.0E-3",TT_Task,"55902",-,-,-,0,TK_NotStart,09/07/2022,,09/07/2022,,"SI20BFT4-41 FS","SI20BFT4-41","SI20M--7A15 FF,SI20SGC6J24 FS,SI20SGY7A21 FS,SI20M--7A16 FS,SI20UBX5B10 FS","SI20M--7A15,SI20SGC6J24,SI20SGY7A21,SI20M--7A16,SI20UBX5B10",101,,101,,23,,23,,73,640,"HK1003 -Blackpoint D2 - Rev.0E DD30092021"
1-2850,SI20BFT4-41,"(OTD-OS) ON SITE (ET7) SEE/SFC-TRANSFORMERS 20MKC / 20MBJ",5121,"HK1003-Rev.0E-3",TT_FinMile,"55902",-,-,-,0,TK_NotStart,24/06/2022,,24/06/2022,,"SI20MKC4-25 FS,SI20BFT4-27 FS","SI20MKC4-25,SI20BFT4-27","SI20MBJ7-10 FS,SI20MBJ7-11 FS","SI20MBJ7-10,SI20MBJ7-11",98,,98,,23,,23,,71,640,"HK1003 -Blackpoint D2 - Rev.0E DD30092021"
1-2851,SI20UBD5-63,"(RFE) FOUNDATION 20UBG01/02",5121,"HK1003-Rev.0E-3",TT_FinMile,"55902",-,-,-,0,TK_NotStart,20/05/2022,,20/05/2022,,"SI20UBD5-61.02 FS","SI20UBD5-61.02","SI20MBJ7-10 FS","SI20MBJ7-10",93,,93,,21,,21,,66,1144,"HK1003 -Blackpoint D2 - Rev.0E DD30092021"
1-2852,SI20UBD5-61,"CONSTRUCTION FOUNDATION 20UBG01/02",5121,"HK1003-Rev.0E-3",TT_Task,"55902",-,-,-,0,TK_NotStart,23/04/2022,,13/05/2022,,"SI20UBD5-62 SS","SI20UBD5-62","","",90,,92,,21,,21,,59,10616,"HK1003 -Blackpoint D2 - Rev.0E DD30092021"
1-2853,SI20UBD5-62,"(H) START PLACING FORMWORK 20UBG01/02",5121,"HK1003-Rev.0E-3",TT_Mile,"55902",-,-,-,0,TK_NotStart,23/04/2022,,23/04/2022,,"SI20UBD5-60 FS","SI20UBD5-60","SI20UBD5-61 SS,SI20UBD5-61.00 FS","SI20UBD5-61,SI20UBD5-61.00",90,,90,,21,,21,,59,1144,"HK1003 -Blackpoint D2 - Rev.0E DD30092021"
1-2854,SI20UBD5-60,"WORK PREPARATION, EXCAVATION 20UBG01/02",5121,"HK1003-Rev.0E-3",TT_Task,"55902",-,-,-,0,TK_NotStart,09/04/2022,,22/04/2022,,"SI--UBF2A76 FS,SI20UBF5E45 FF,SI-----5-21& FS,SI-----5-20 FS,SI-P222-84 FS","SI--UBF2A76,SI20UBF5E45,SI-----5-21&,SI-----5-20,SI-P222-84","SI20UBD5-62 FS,SI20UTG5-30 SS,SI-P222-131# FF,SI-P222-131# SS","SI20UBD5-62,SI20UTG5-30,SI-P222-131#,SI-P222-131#",88,,89,,20,,20,,57,1144,"HK1003 -Blackpoint D2 - Rev.0E DD30092021"
1-2855,SI20LCA6A46,"ERECTION, NDT, PIPES / VALVES 20LCA ON PIPE BRIDGES",5121,"HK1003-Rev.0E-3",TT_Task,"55902",-,-,-,0,TK_NotStart,17/06/2022,,22/12/2022,,"SI20UEY6-115 FF,SI20MAN6E40 FF,SI20MAG6-65 FS,SI20UMY6M71 FS,SI---1P6A05 FS","SI20UEY6-115,SI20MAN6E40,SI20MAG6-65,SI20UMY6M71,SI---1P6A05","SI20UMY6M70 FS,SI20-6-16# FF,SI20-6-16# SS","SI20UMY6M70,SI20-6-16#,SI20-6-16#",97,,124,,22,,29,,70,680,"HK1003 -Blackpoint D2 - Rev.0E DD30092021"
1-2856,SI20UEY6-115,"(RFP) READY FOR PIPING PIPE BRIDGE 20UEY01",5121,"HK1003-Rev.0E-3",TT_FinMile,"55902",-,-,-,0,TK_NotStart,03/07/2022,,03/07/2022,,"SI20UEY6-100 FS,SI20UEY6-105 FS,SI20UEY6-110 FS","SI20UEY6-100,SI20UEY6-105,SI20UEY6-110","SI20LCA6A46 FF,SI20EKG6I15 FS,SI20EKG6H17 FS,SI20UMY6B-15 FF","SI20LCA6A46,SI20EKG6I15,SI20EKG6H17,SI20UMY6B-15",100,,100,,23,,23,,72,1192,"HK1003 -Blackpoint D2 - Rev.0E DD30092021"
1-2857,SI20UEY6-95,"(RFP) READY FOR PIPING PIPE BRIDGE 20UEY02",5121,"HK1003-Rev.0E-3",TT_FinMile,"55902",-,-,-,0,TK_NotStart,07/07/2022,,07/07/2022,,"SI20UEY6-90 FS,SI20UEY6-85 FS,SI20TP-168& FS","SI20UEY6-90,SI20UEY6-85,SI20TP-168&","SI20EKG6H17 FS","SI20EKG6H17",100,,100,,23,,23,,72,1160,"HK1003 -Blackpoint D2 - Rev.0E DD30092021"
1-2858,SP20MA-3-83,"ENGINEERING / PREPARATION RFQ ST CONDENSER",5121,"HK1003-Rev.0E-3",TT_Task,"55902",-,-,-,100,TK_Complete,15/01/2021,15/01/2021,25/03/2021,25/03/2021,"SI-----1-05 FS","SI-----1-05","SP20MAG3-25 FS,SI--PAD2-90 FS,SP20MA-2-82 FS","SP20MAG3-25,SI--PAD2-90,SP20MA-2-82",23,23,33,33,5,5,7,7,2,,"HK1003 -Blackpoint D2 - Rev.0E DD30092021"
1-2859,SI-UZA2-60,"BD - SUBMISSION & APPROVAL - RING ROAD",5121,"HK1003-Rev.0E-3",TT_Task,"55902",-,-,-,100,TK_Complete,21/05/2021,21/05/2021,30/08/2021,30/08/2021,"SI-UZA2-55 SS,SI-P221-375& FS","SI-UZA2-55,SI-P221-375&","SI-UZA2-70 FS,SI-UZA2-65 SS,SI-UZA2-96.00 FS,SI-UZA2-98.00 FS","SI-UZA2-70,SI-UZA2-65,SI-UZA2-96.00,SI-UZA2-98.00",41,41,56,56,9,9,13,13,13,,"HK1003 -Blackpoint D2 - Rev.0E DD30092021"
1-2860,SI-UZA2-70,"BD - CONSENT LETTER  UNDERGROUND (U/G) DRAINAGE",5121,"HK1003-Rev.0E-3",TT_Task,"55902",-,-,-,0,TK_NotStart,11/10/2021,,07/11/2021,,"SI-UZA2-60 FS,SI-UZA2-65 FS","SI-UZA2-60,SI-UZA2-65","SI-UZA2-97.00 FS,SI-UZA2-98.00 FS","SI-UZA2-97.00,SI-UZA2-98.00",62,,66,,14,,15,,33,1416,"HK1003 -Blackpoint D2 - Rev.0E DD30092021"
1-2861,SI20UPY2-10,"BASIC DESIGN, CHECKER CONCRETE STRUCTURE 20UPY",5121,"HK1003-Rev.0E-3",TT_Task,"55902",-,-,-,100,TK_Complete,02/05/2021,02/05/2021,29/05/2021,29/05/2021,"SI20UPY2-5 FS","SI20UPY2-5","SI20UPY2-15 FS","SI20UPY2-15",39,39,43,43,9,9,10,10,10,,"HK1003 -Blackpoint D2 - Rev.0E DD30092021"
1-2862,SI20UPY2-20,"CLIENT - REVIEW - DETAIL DESIGN CONCRETE 20UPY",5121,"HK1003-Rev.0E-3",TT_Task,"55902",-,-,-,100,TK_Complete,16/07/2021,16/07/2021,09/08/2021,09/08/2021,"SI20UPY2-15 FS","SI20UPY2-15","SI20UPY2-25 SS","SI20UPY2-25",49,49,53,53,11,11,12,12,22,,"HK1003 -Blackpoint D2 - Rev.0E DD30092021"
1-2863,SI20UPY2-30,"BD - CONSENT LETTER DETAIL DESIGN CONCRETE 20UPY",5121,"HK1003-Rev.0E-3",TT_Task,"55902",-,-,-,0,TK_NotStart,05/11/2021,,02/12/2021,,"SI20UPY2-39 FS","SI20UPY2-39","SI20UPY5P15 FS,SI20UPY5P10 FS","SI20UPY5P15,SI20UPY5P10",65,,69,,15,,16,,37,2232,"HK1003 -Blackpoint D2 - Rev.0E DD30092021"
1-2864,SI20UPY2-25,"BD - SUBMISSION & APPROVAL - DETAIL DESIGN CONCRETE 20UPY",5121,"HK1003-Rev.0E-3",TT_Task,"55902",-,-,-,100,TK_Complete,11/06/2021,11/06/2021,31/08/2021,31/08/2021,"SI20UPY2-20 SS,SI20UMC2B40 SS,SI20UPY2-04 FS,SI-P221-30& FS","SI20UPY2-20,SI20UMC2B40,SI20UPY2-04,SI-P221-30&","SI20UPY2-36 FS,SI20UPY2-38 FS","SI20UPY2-36,SI20UPY2-38",44,44,56,56,10,10,13,13,16,,"HK1003 -Blackpoint D2 - Rev.0E DD30092021"
1-2865,SI20UMC5C56,"WALL AND ROOF CLADDING MAIN PART 20UMC",5121,"HK1003-Rev.0E-3",TT_Task,"55902",-,-,-,0,TK_NotStart,28/03/2022,,10/07/2022,,"SI20UMC5C10 FS","SI20UMC5C10","SI20UMC5C15 FS,SI20UMC5C55 FS,SI20MA-6-00 SS,SI20MA-6-07 SS,SI20UMC5C45 SS,SI20UMC5C57 SS","SI20UMC5C15,SI20UMC5C55,SI20MA-6-00,SI20MA-6-07,SI20UMC5C45,SI20UMC5C57",86,,101,,20,,23,,54,24,"HK1003 -Blackpoint D2 - Rev.0E DD30092021"
1-2866,SI--SG-2-36,"CLIENT - REVIEW - DETAIL DESIGN FIRE MAIN RING",5121,"HK1003-Rev.0E-3",TT_Task,"55902",-,-,-,100,TK_Complete,06/08/2021,06/08/2021,30/08/2021,30/08/2021,"SI--SG-2-89 FS","SI--SG-2-89","SI--SG-2-37 FS","SI--SG-2-37",52,52,56,56,12,12,13,13,25,,"HK1003 -Blackpoint D2 - Rev.0E DD30092021"
1-2867,SI--SG-2-38,"BD - CONSENT LETTER - HYDRAULIC SUBMISSION APPROVAL (FSI/314 SCHEMATIC DWGS SUBMISSION)",5121,"HK1003-Rev.0E-3",TT_Task,"55902",-,-,-,0,TK_NotStart,30/10/2021,,26/11/2021,,"SI--SG-2-37 FS","SI--SG-2-37","SI20SGA6A26 FS,SI20EKG6I15 FS,SI20EKG6H16 FS,SI-UZA2-99.00 FS","SI20SGA6A26,SI20EKG6I15,SI20EKG6H16,SI-UZA2-99.00",65,,68,,15,,16,,36,1040,"HK1003 -Blackpoint D2 - Rev.0E DD30092021"
1-2868,SI--SG-2-37,"BD - SUBMISSION & APPROVAL - HYDRAULIC SUBMISSION APPROVAL (FSI/314 SCHEMATIC DWGS SUBMISSION)",5121,"HK1003-Rev.0E-3",TT_Task,"55902",-,-,-,50,TK_Active,31/08/2021,31/08/2021,29/10/2021,,"SI--SG-2-36 FS,SI-P221-385& FS","SI--SG-2-36,SI-P221-385&","SI--SG-2-38 FS","SI--SG-2-38",56,56,64,,13,13,15,,27,1040,"HK1003 -Blackpoint D2 - Rev.0E DD30092021"
1-2869,SI--SG-2-89,"DETAIL DESIGN FIRE MAIN RING / OVERALL FIRE WATER DEMAND MINIMUM CALCULATION",5121,"HK1003-Rev.0E-3",TT_Task,"55902",-,-,-,100,TK_Complete,25/06/2021,25/06/2021,05/08/2021,05/08/2021,"SI--SG-2-27 FS","SI--SG-2-27","SI--SG-2-36 FS","SI--SG-2-36",46,46,52,52,10,10,12,12,19,,"HK1003 -Blackpoint D2 - Rev.0E DD30092021"
1-2870,SI--UMX2-55,"CLIENT - REVIEW - DETAIL DESIGN CONCRETE 20UMX",5121,"HK1003-Rev.0E-3",TT_Task,"55902",-,-,-,80,TK_Active,10/09/2021,10/09/2021,04/10/2021,,"SI--UMX2-70 FS","SI--UMX2-70","SI--UMX2-65 SS","SI--UMX2-65",57,57,61,,13,13,14,,29,12384,"HK1003 -Blackpoint D2 - Rev.0E DD30092021"
1-2871,SI--UMX2-65,"BD - SUBMISSION & APPROVAL - DETAIL DESIGN CONCRETE 20UMX",5121,"HK1003-Rev.0E-3",TT_Task,"55902",-,-,-,33,TK_Active,10/09/2021,10/09/2021,08/11/2021,,"SI--UMX2-55 SS,SI-P221-45& FS,SI--UHA2-79 SS","SI--UMX2-55,SI-P221-45&,SI--UHA2-79","SI--UMX2-85 FS,SI--UMX2-86 FS","SI--UMX2-85,SI--UMX2-86",57,57,66,,13,13,15,,29,104,"HK1003 -Blackpoint D2 - Rev.0E DD30092021"
1-2872,SI--UMX2-85,"BD - CONSENT LETTER - DETAIL DESIGN CONCRETE 20UMX",5121,"HK1003-Rev.0E-3",TT_Task,"55902",-,-,-,0,TK_NotStart,09/11/2021,,06/12/2021,,"SI--UMX2-65 FS","SI--UMX2-65","SI--UMX2-75 FS,SI--UMX2-87 FS","SI--UMX2-75,SI--UMX2-87",66,,70,,15,,16,,37,104,"HK1003 -Blackpoint D2 - Rev.0E DD30092021"
1-2873,SI20BZP7-150,"ERECTION CABLE TRAYS AIR INTAKE SYSTEM 20MBL",5121,"HK1003-Rev.0E-3",TT_Task,"55902",-,-,-,0,TK_NotStart,27/11/2022,,10/12/2022,,"SI20MBL6-20 FS,SI--BZP4B40 FS,SI20BZP7-26 FS,SI--PEE7-20 FS","SI20MBL6-20,SI--BZP4B40,SI20BZP7-26,SI--PEE7-20","SI20MBL7-25 FS,SI20BZP7B10# FF,SI20BZP7B10# SS,SI20BZK7A34 FS,SI20BZK7A36 FS,SI20BZK7E27 FS,SI20BZK7A37 FS,SI20BZK7E26 FS","SI20MBL7-25,SI20BZP7B10#,SI20BZP7B10#,SI20BZK7A34,SI20BZK7A36,SI20BZK7E27,SI20BZK7A37,SI20BZK7E26",121,,123,,28,,28,,86,200,"HK1003 -Blackpoint D2 - Rev.0E DD30092021"
1-2874,SI20B--8-10&,"BACK ENERGISING",5121,"HK1003-Rev.0E-3",TT_Mile,"55902",-,-,-,0,TK_NotStart,11/04/2023,,11/04/2023,,"SI--BZP4B41 FS","SI--BZP4B41","SI20B--8-50 FS","SI20B--8-50",140,,140,,32,,32,,94,16,"HK1003 -Blackpoint D2 - Rev.0E DD30092021"
1-2875,SI20MKA6-83,"MEASUREMENT OF AXIAL ALIGNMENT OF SHAFT TO GT MKA",5121,"HK1003-Rev.0E-3",TT_Task,"55902",-,-,-,0,TK_NotStart,03/08/2022,,04/08/2022,,"SI20MKA6-82 FS","SI20MKA6-82","SI20MKA5-26 FS","SI20MKA5-26",104,,104,,24,,24,,76,1784,"HK1003 -Blackpoint D2 - Rev.0E DD30092021"
1-2876,SI20MA-6B84,"COMMON FINAL AXIAL MEASUREMENT TURBOSET",5121,"HK1003-Rev.0E-3",TT_Task,"55902",-,-,-,0,TK_NotStart,31/12/2022,,20/01/2023,,"SI20MAV6-70 FS,SI20MAJ6A15 FS,SI20MA-6B85 FS,SI20MB-6-57 FS,SI20MBL6-25 FS","SI20MAV6-70,SI20MAJ6A15,SI20MA-6B85,SI20MB-6-57,SI20MBL6-25","SI20MA-6B35 FS,SI20MA-6E41 FS,SI20MBV6-55 FS,SI--2226-56 SS,SI--2222-33 FS","SI20MA-6B35,SI20MA-6E41,SI20MBV6-55,SI--2226-56,SI--2222-33",126,,128,,29,,30,,88,8,"HK1003 -Blackpoint D2 - Rev.0E DD30092021"
1-2877,SI20MAG6-62,"PREPARATION OF BYPASS STATION INSTALLATION",5121,"HK1003-Rev.0E-3",TT_Task,"55902",-,-,-,0,TK_NotStart,21/07/2022,,22/07/2022,,"SI20MAG6-34 FS,SI20MAG6-30 SS","SI20MAG6-34,SI20MAG6-30","SI20MAN6-15 FS","SI20MAN6-15",102,,102,,23,,24,,74,184,"HK1003 -Blackpoint D2 - Rev.0E DD30092021"
1-2878,SI20MAX6H16,"ERECTION, NDT, PT PIPES / VALVES MAX BEFORE ST CONNECTION AVAILABLE",5121,"HK1003-Rev.0E-3",TT_Task,"55902",-,-,-,0,TK_NotStart,20/11/2022,,10/12/2022,,"SI20MAX6A65 FS,SI20MA-6A11 FS,SI---1P6A05 FS","SI20MAX6A65,SI20MA-6A11,SI---1P6A05","SI20MAX6H15 FS,SI20-6-16# FF,SI20-6-16# SS","SI20MAX6H15,SI20-6-16#,SI20-6-16#",120,,123,,28,,28,,85,464,"HK1003 -Blackpoint D2 - Rev.0E DD30092021"
1-2879,SI20MA-6B85,"FINISHING CASING ASSEMBLY MA",5121,"HK1003-Rev.0E-3",TT_Task,"55902",-,-,-,0,TK_NotStart,04/12/2022,,07/01/2023,,"SI20MA-6B39 FS","SI20MA-6B39","SI20MA-6B84 FS,SI20MA-6D81 FF","SI20MA-6B84,SI20MA-6D81",122,,127,,28,,29,,86,8,"HK1003 -Blackpoint D2 - Rev.0E DD30092021"
1-2880,SI20MA-6D81,"INSTALLATION ST INSULATION (FIRST LAYER) MA",5121,"HK1003-Rev.0E-3",TT_Task,"55902",-,-,-,0,TK_NotStart,11/12/2022,,07/01/2023,,"SI20MA-6B85 FF","SI20MA-6B85","SI20MA-6D45 FS,SI--2226-56 FS,SI20MA-6B15# FF","SI20MA-6D45,SI--2226-56,SI20MA-6B15#",123,,127,,28,,29,,87,216,"HK1003 -Blackpoint D2 - Rev.0E DD30092021"
1-2881,SI20MKA6F17,"ERECTION OF SLIPRING SET MKA",5121,"HK1003-Rev.0E-3",TT_Task,"55902",-,-,-,0,TK_NotStart,28/08/2022,,31/08/2022,,"SI20MKA6F05 FS","SI20MKA6F05","SI20MKA6F16 FS,SI20MKA6-32 FS","SI20MKA6F16,SI20MKA6-32",108,,108,,25,,25,,79,448,"HK1003 -Blackpoint D2 - Rev.0E DD30092021"
1-2882,SI20MKA6F18,"FINISH INSTALLATION OF SLIPRING SET MKA",5121,"HK1003-Rev.0E-3",TT_Task,"55902",-,-,-,0,TK_NotStart,08/01/2023,,21/01/2023,,"SI20MKA6F16 FS,SI20CY-7-15 FF","SI20MKA6F16,SI20CY-7-15","SI20MKA6-26 FS","SI20MKA6-26",127,,129,,29,,30,,88,232,"HK1003 -Blackpoint D2 - Rev.0E DD30092021"
1-2883,SI--LCB2B86,"(DF) INPUT FOR VEL  CONDENSATE EXTRACTION PUMP LCB",5121,"HK1003-Rev.0E-3",TT_Mile,"55902",-,-,-,100,TK_Complete,07/05/2021,07/05/2021,07/05/2021,07/05/2021,"SI--LCB2B85 FS","SI--LCB2B85","SP--B--2-61 FS,SI--B--2-55 FS","SP--B--2-61,SI--B--2-55",39,39,39,39,9,9,9,9,11,,"HK1003 -Blackpoint D2 - Rev.0E DD30092021"
1-2884,SI--GM-2B89,"(DF) INPUT FOR VEL  SUMP PUMP GM",5121,"HK1003-Rev.0E-3",TT_Mile,"55902",-,-,-,100,TK_Complete,29/05/2021,29/05/2021,29/05/2021,29/05/2021,"SI--GM-2B85 FS","SI--GM-2B85","SP--B--2-61 FS","SP--B--2-61",43,43,43,43,10,10,10,10,14,,"HK1003 -Blackpoint D2 - Rev.0E DD30092021"
1-2885,SI20BAT2-87,"PRELIMINARY MS2 INPUT AVAILABLE MAIN TRANSFORMER BAT/BBT",5121,"HK1003-Rev.0E-3",TT_Mile,"55902",-,-,-,100,TK_Complete,26/02/2021,26/02/2021,26/02/2021,26/02/2021,"SI20BAT2-15 FS","SI20BAT2-15","SI--UB-2E40 FS","SI--UB-2E40",29,29,29,29,6,6,6,6,5,,"HK1003 -Blackpoint D2 - Rev.0E DD30092021"
1-2886,SI--PCB2B86,"(DF) INPUT FOR VEL SERVICE COOLING WATER BOOSTER PUMP PCB",5121,"HK1003-Rev.0E-3",TT_Mile,"55902",-,-,-,100,TK_Complete,17/04/2021,17/04/2021,17/04/2021,17/04/2021,"SI--PCB2B85 FS","SI--PCB2B85","SP--B--2-61 FS,SI--B--2-55 FS","SP--B--2-61,SI--B--2-55",37,37,37,37,8,8,8,8,9,,"HK1003 -Blackpoint D2 - Rev.0E DD30092021"
1-2887,SI20LCL2B88,"(DF) INPUT FOR VEL BOILER BLOWDOWN PUMP LCL",5121,"HK1003-Rev.0E-3",TT_Mile,"55902",-,-,-,100,TK_Complete,31/05/2021,31/05/2021,31/05/2021,31/05/2021,"SI20LCL2B85 FS","SI20LCL2B85","SP--B--2-61 FS","SP--B--2-61",43,43,43,43,10,10,10,10,15,,"HK1003 -Blackpoint D2 - Rev.0E DD30092021"
1-2888,SI--PAC2B87,"(DF) INPUT FOR VEL CIRC. CW PUMP PAC",5121,"HK1003-Rev.0E-3",TT_Mile,"55902",-,-,-,100,TK_Complete,07/05/2021,07/05/2021,07/05/2021,07/05/2021,"SI--PAC2B85 FS","SI--PAC2B85","SP--B--2-61 FS","SP--B--2-61",39,39,39,39,9,9,9,9,11,,"HK1003 -Blackpoint D2 - Rev.0E DD30092021"
1-2889,SI20PAS2A92,"(DF) INPUT FOR VEL CT MAKE-UP WATER PUMP PAS",5121,"HK1003-Rev.0E-3",TT_Mile,"55902",-,-,-,100,TK_Complete,28/06/2021,28/06/2021,28/06/2021,28/06/2021,"SI20PAS2A85 FS","SI20PAS2A85","SI--B--2A55 FS","SI--B--2A55",47,47,47,47,11,11,11,11,19,,"HK1003 -Blackpoint D2 - Rev.0E DD30092021"
1-2890,SI20UMX2-82,"BD - SUBMISSION & APPROVAL - DETAIL DESIGN CONCRETE 20UMX02",5121,"HK1003-Rev.0E-3",TT_Task,"55902",-,-,-,0,TK_NotStart,10/10/2021,,08/12/2021,,"SI20UMX2-80 SS,SI--2222-132 FS,SI-P221-290& FS,SI--UBA2-96 SS","SI20UMX2-80,SI--2222-132,SI-P221-290&,SI--UBA2-96","SI20UMX2-84 FS,SI20UMX2-104 FS,SI20UMX2-106 FS","SI20UMX2-84,SI20UMX2-104,SI20UMX2-106",62,,70,,14,,16,,32,1160,"HK1003 -Blackpoint D2 - Rev.0E DD30092021"
1-2891,SI20UMX2-80,"CLIENT - REVIEW - DETAIL DESIGN CONCRETE 20UMX02",5121,"HK1003-Rev.0E-3",TT_Task,"55902",-,-,-,0,TK_NotStart,10/10/2021,,03/11/2021,,"SI20UMX2-70 FS,SI20UMX2-50 FS","SI20UMX2-70,SI20UMX2-50","SI20UMX2-82 SS","SI20UMX2-82",62,,65,,14,,15,,32,1160,"HK1003 -Blackpoint D2 - Rev.0E DD30092021"
1-2892,SI20UMX2-84,"BD - CONSENT LETTER DETAIL DESIGN CONCRETE 20UMX02",5121,"HK1003-Rev.0E-3",TT_Task,"55902",-,-,-,0,TK_NotStart,09/12/2021,,05/01/2022,,"SI20UMX2-82 FS","SI20UMX2-82","SI20UMX2-75 FS,SI20UMX2-107 FS","SI20UMX2-75,SI20UMX2-107",70,,74,,16,,17,,41,1704,"HK1003 -Blackpoint D2 - Rev.0E DD30092021"
1-2893,SI20SCA2-88,"(DF) INPUT FOR VEL  AIR COMPRESSOR SYSTEM SCA",5121,"HK1003-Rev.0E-3",TT_Mile,"55902",-,-,-,100,TK_Complete,27/07/2021,27/07/2021,27/07/2021,27/07/2021,"SI20SCA2-89 SS","SI20SCA2-89","SP--B--2-61 FS","SP--B--2-61",51,51,51,51,12,12,12,12,23,,"HK1003 -Blackpoint D2 - Rev.0E DD30092021"
1-2894,SI--HA-2-100,"(DF) INPUT FOR VEL HRSG",5121,"HK1003-Rev.0E-3",TT_Mile,"55902",-,-,-,100,TK_Complete,13/03/2021,13/03/2021,13/03/2021,13/03/2021,"SI--HA-2-85 FS","SI--HA-2-85","SI--BFF2-15 FS,SP--B--2-61 FS","SI--BFF2-15,SP--B--2-61",32,32,32,32,7,7,7,7,6,,"HK1003 -Blackpoint D2 - Rev.0E DD30092021"
1-2895,SI--EK-2-90,"(DF) INPUT FOR VEL  FUEL GAS RECEIVING AND MIXING SYSTEM EK",5121,"HK1003-Rev.0E-3",TT_Mile,"55902",-,-,-,100,TK_Complete,05/07/2021,05/07/2021,05/07/2021,05/07/2021,"SI--EK-2-86 FS","SI--EK-2-86","SP--B--2-61 FS,SI-P222-62 FS","SP--B--2-61,SI-P222-62",48,48,48,48,11,11,11,11,20,,"HK1003 -Blackpoint D2 - Rev.0E DD30092021"
1-2896,SI--PAD2-87,"(DF) INPUT FOR VEL  COOLING TOWER EQUIPMENT PAD",5121,"HK1003-Rev.0E-3",TT_Mile,"55902",-,-,-,100,TK_Complete,04/03/2021,04/03/2021,04/03/2021,04/03/2021,"SI--PAD2-85 FS","SI--PAD2-85","SP--B--2-61 FS","SP--B--2-61",30,30,30,30,7,7,7,7,5,,"HK1003 -Blackpoint D2 - Rev.0E DD30092021"
1-2897,SI--LBF2B86,"(DF) INPUT FOR VEL BYPASS STATION 20LBF",5121,"HK1003-Rev.0E-3",TT_Mile,"55902",-,-,-,100,TK_Complete,13/02/2021,13/02/2021,13/02/2021,13/02/2021,"SI--LBF2B85 FS","SI--LBF2B85","SP--B--2-61 FS","SP--B--2-61",28,28,28,28,6,6,6,6,4,,"HK1003 -Blackpoint D2 - Rev.0E DD30092021"
1-2898,SI--EK-2-91,"(DF) INPUT FOR VEL  GAS FINAL FILTER/ PREHEATER 20EKG",5121,"HK1003-Rev.0E-3",TT_Mile,"55902",-,-,-,100,TK_Complete,28/06/2021,28/06/2021,28/06/2021,28/06/2021,"SI--EK-2-85 FS","SI--EK-2-85","SP--B--2-61 FS","SP--B--2-61",47,47,47,47,11,11,11,11,19,,"HK1003 -Blackpoint D2 - Rev.0E DD30092021"
1-2899,SI20UTG2-25,"CLIENT - REVIEW - DETAIL DESIGN CONCRETE 20UTG01",5121,"HK1003-Rev.0E-3",TT_Task,"55902",-,-,-,0,TK_NotStart,21/10/2021,,14/11/2021,,"SI20UTG2-15 FS,SI20UTG2-20 FS,SI20UTG2-20 FF","SI20UTG2-15,SI20UTG2-20,SI20UTG2-20","SI20UTG2-30 SS","SI20UTG2-30",63,,67,,14,,15,,35,2768,"HK1003 -Blackpoint D2 - Rev.0E DD30092021"
1-2900,SI20UTG2-30,"BD - SUBMISSION & APPROVAL - DETAIL DESIGN CONCRETE 20UTG01",5121,"HK1003-Rev.0E-3",TT_Task,"55902",-,-,-,0,TK_NotStart,21/10/2021,,19/12/2021,,"SI20UTG2-25 SS,SI-P221-35& FS,SI--UBA2-96 SS,SI-P222-77 FS","SI20UTG2-25,SI-P221-35&,SI--UBA2-96,SI-P222-77","SI20UTG2-35 FS,SI20UTG2S-10 SS,SI20UTG2-89 FS","SI20UTG2-35,SI20UTG2S-10,SI20UTG2-89",63,,72,,14,,16,,35,2768,"HK1003 -Blackpoint D2 - Rev.0E DD30092021"
1-2901,SI20UTG2-35,"BD - CONSENT LETTER - DETAIL DESIGN CONCRETE 20UTG01",5121,"HK1003-Rev.0E-3",TT_Task,"55902",-,-,-,0,TK_NotStart,20/12/2021,,16/01/2022,,"SI20UTG2-30 FS","SI20UTG2-30","SI20UTG2-40 FS,SI20UTG2-90 FS","SI20UTG2-40,SI20UTG2-90",72,,76,,16,,17,,43,3328,"HK1003 -Blackpoint D2 - Rev.0E DD30092021"
1-2902,SI20UTG5-22,"(H) START PLACING FORMWORK 20UTG02",5121,"HK1003-Rev.0E-3",TT_Mile,"55902",-,-,-,0,TK_NotStart,14/05/2022,,14/05/2022,,"SI20UTG5-20 FS,SI20UTG2-96 FS","SI20UTG5-20,SI20UTG2-96","SI20UTG5-24 FS","SI20UTG5-24",93,,93,,21,,21,,64,2504,"HK1003 -Blackpoint D2 - Rev.0E DD30092021"
1-2903,SI20UTG5-20,"WORK PREPARATION, EXCAVATION 20UTG02",5121,"HK1003-Rev.0E-3",TT_Task,"55902",-,-,-,0,TK_NotStart,30/04/2022,,13/05/2022,,"SI20UBA5-17 FS,SI20UTG2-64 FS,SI-----5-21& FS,SI-----5-20 FS,SI-P222-84 FS,SI20UTG2-95 FS","SI20UBA5-17,SI20UTG2-64,SI-----5-21&,SI-----5-20,SI-P222-84,SI20UTG2-95","SI20UTG5-22 FS,SI-P222-131# FF,SI-P222-131# SS","SI20UTG5-22,SI-P222-131#,SI-P222-131#",91,,92,,21,,21,,60,2504,"HK1003 -Blackpoint D2 - Rev.0E DD30092021"
1-2904,SI20UTG5-26,"(RFE) FOUNDATION 20UTG02",5121,"HK1003-Rev.0E-3",TT_FinMile,"55902",-,-,-,0,TK_NotStart,27/05/2022,,27/05/2022,,"SI20UTG5-24 FS","SI20UTG5-24","SI20QJ-6B42 FS,SI20UTG2S-76 FS","SI20QJ-6B42,SI20UTG2S-76",94,,94,,22,,22,,66,2504,"HK1003 -Blackpoint D2 - Rev.0E DD30092021"
1-2905,SI20UTG5-24,"CONSTRUCTION FOUNDATION 20UTG02",5121,"HK1003-Rev.0E-3",TT_Task,"55902",-,-,-,0,TK_NotStart,14/05/2022,,27/05/2022,,"SI20UTG5-22 FS","SI20UTG5-22","SI20UTG5-26 FS","SI20UTG5-26",93,,94,,21,,22,,64,2504,"HK1003 -Blackpoint D2 - Rev.0E DD30092021"
1-2906,SI20UTG5-32,"(H) START PLACING FORMWORK 20UTG03",5121,"HK1003-Rev.0E-3",TT_Mile,"55902",-,-,-,0,TK_NotStart,23/04/2022,,23/04/2022,,"SI20UTG5-30 FS,SI20UTG2-98 FS","SI20UTG5-30,SI20UTG2-98","SI20UTG5-34 FS","SI20UTG5-34",90,,90,,21,,21,,59,2672,"HK1003 -Blackpoint D2 - Rev.0E DD30092021"
1-2907,SI20UTG5-30,"WORK PREPARATION, EXCAVATION 20UTG03",5121,"HK1003-Rev.0E-3",TT_Task,"55902",-,-,-,0,TK_NotStart,09/04/2022,,22/04/2022,,"SI20UBD5-60 SS,SI20UTG2-72 FS,SI-----5-21& FS,SI-----5-20 FS,SI-P222-84 FS,SI20UTG2-97 FS","SI20UBD5-60,SI20UTG2-72,SI-----5-21&,SI-----5-20,SI-P222-84,SI20UTG2-97","SI20UTG5-32 FS,SI-P222-131# FF,SI-P222-131# SS","SI20UTG5-32,SI-P222-131#,SI-P222-131#",88,,89,,20,,20,,57,2672,"HK1003 -Blackpoint D2 - Rev.0E DD30092021"
1-2908,SI20UTG5-36,"(RFE) FOUNDATION 20UTG03",5121,"HK1003-Rev.0E-3",TT_FinMile,"55902",-,-,-,0,TK_NotStart,06/05/2022,,06/05/2022,,"SI20UTG5-34 FS","SI20UTG5-34","SI20QJ-6B42 FS,SI20UTG2S-96 FS","SI20QJ-6B42,SI20UTG2S-96",91,,91,,21,,21,,63,2672,"HK1003 -Blackpoint D2 - Rev.0E DD30092021"
1-2909,SI20UTG5-34,"CONSTRUCTION FOUNDATION 20UTG03",5121,"HK1003-Rev.0E-3",TT_Task,"55902",-,-,-,0,TK_NotStart,23/04/2022,,06/05/2022,,"SI20UTG5-32 FS","SI20UTG5-32","SI20UTG5-36 FS","SI20UTG5-36",90,,91,,21,,21,,59,2672,"HK1003 -Blackpoint D2 - Rev.0E DD30092021"
1-2910,SI20UTG5-52,"(H) START PLACING FORMWORK 20UTG05",5121,"HK1003-Rev.0E-3",TT_Mile,"55902",-,-,-,0,TK_NotStart,13/05/2022,,13/05/2022,,"SI20UTG5-50 FS,SI20UTG2-100 FS","SI20UTG5-50,SI20UTG2-100","SI20UTG5-54 FS","SI20UTG5-54",92,,92,,21,,21,,64,2512,"HK1003 -Blackpoint D2 - Rev.0E DD30092021"
1-2911,SI20UTG5-50,"WORK PREPARATION, EXCAVATION 20UTG05",5121,"HK1003-Rev.0E-3",TT_Task,"55902",-,-,-,0,TK_NotStart,29/04/2022,,12/05/2022,,"SI20UBA5-59 SS,SI20UTG2-80 FS,SI-----5-21& FS,SI-----5-20 FS,SI-P222-84 FS,SI20UTG2-99 FS","SI20UBA5-59,SI20UTG2-80,SI-----5-21&,SI-----5-20,SI-P222-84,SI20UTG2-99","SI20UTG5-52 FS,SI-P222-131# FF,SI-P222-131# SS","SI20UTG5-52,SI-P222-131#,SI-P222-131#",90,,92,,21,,21,,60,2512,"HK1003 -Blackpoint D2 - Rev.0E DD30092021"
1-2912,SI20UTG5-56,"(RFE) FOUNDATION 20UTG05",5121,"HK1003-Rev.0E-3",TT_FinMile,"55902",-,-,-,0,TK_NotStart,26/05/2022,,26/05/2022,,"SI20UTG5-54 FS","SI20UTG5-54","SI20QJ-6B42 FS,SI20UTG2S-116 FS","SI20QJ-6B42,SI20UTG2S-116",94,,94,,22,,22,,66,2512,"HK1003 -Blackpoint D2 - Rev.0E DD30092021"
1-2913,SI20UTG5-54,"CONSTRUCTION FOUNDATION 20UTG05",5121,"HK1003-Rev.0E-3",TT_Task,"55902",-,-,-,0,TK_NotStart,13/05/2022,,26/05/2022,,"SI20UTG5-52 FS","SI20UTG5-52","SI20UTG5-56 FS","SI20UTG5-56",92,,94,,21,,22,,64,2512,"HK1003 -Blackpoint D2 - Rev.0E DD30092021"
1-2914,SI20UTG5-42,"(H) START PLACING FORMWORK 20UTG04",5121,"HK1003-Rev.0E-3",TT_Mile,"55902",-,-,-,0,TK_NotStart,24/01/2022,,24/01/2022,,"SI20UTG5-40 FS,SI20UTG2-94 FS","SI20UTG5-40,SI20UTG2-94","SI20UTG5-44 FS,SI20UTG5-44.00 FS","SI20UTG5-44,SI20UTG5-44.00",77,,77,,18,,18,,46,3328,"HK1003 -Blackpoint D2 - Rev.0E DD30092021"
1-2915,SI20UTG5-40,"WORK PREPARATION, EXCAVATION 20UTG04",5121,"HK1003-Rev.0E-3",TT_Task,"55902",-,-,-,0,TK_NotStart,17/01/2022,,23/01/2022,,"SI20UBA5-45 SS,SI20UTG2-56 FS,SI-----5-21& FS,SI-----5-20 FS,SI-P222-84 FS,SI20UTG2-93 FS","SI20UBA5-45,SI20UTG2-56,SI-----5-21&,SI-----5-20,SI-P222-84,SI20UTG2-93","SI20UTG5-42 FS,SI-P222-131# FF,SI-P222-131# SS","SI20UTG5-42,SI-P222-131#,SI-P222-131#",76,,77,,17,,18,,46,3328,"HK1003 -Blackpoint D2 - Rev.0E DD30092021"
1-2916,SI20UTG5-46,"(RFE) FOUNDATION 20UTG04",5121,"HK1003-Rev.0E-3",TT_FinMile,"55902",-,-,-,0,TK_NotStart,13/02/2022,,13/02/2022,,"SI20UTG5-44 FS,SI20UTG5-44.03 FS","SI20UTG5-44,SI20UTG5-44.03","SI20QJ-6B42 FS,SI20UTG2S-56 FS","SI20QJ-6B42,SI20UTG2S-56",80,,80,,18,,18,,49,3328,"HK1003 -Blackpoint D2 - Rev.0E DD30092021"
1-2917,SI20UTG5-44,"CONSTRUCTION FOUNDATION 20UTG04",5121,"HK1003-Rev.0E-3",TT_Task,"55902",-,-,-,0,TK_NotStart,24/01/2022,,06/02/2022,,"SI20UTG5-42 FS","SI20UTG5-42","SI20UTG5-46 FS","SI20UTG5-46",77,,79,,18,,18,,46,3384,"HK1003 -Blackpoint D2 - Rev.0E DD30092021"
1-2918,SI20UBA3C10,"ELECTRICAL MODULES READY FOR INSTALLATION OF COMP. ELECTRICAL MODULES UBA",5121,"HK1003-Rev.0E-3",TT_FinMile,"55902",-,-,-,0,TK_NotStart,16/01/2022,,16/01/2022,,"SI20UBA3C5 FS","SI20UBA3C5","SI20UBA3C20 FS","SI20UBA3C20",76,,76,,17,,17,,46,968,"HK1003 -Blackpoint D2 - Rev.0E DD30092021"
1-2919,SI20UBA3C15,"(ET4b) ELECTRICAL MODULES AT WORKSHOP READY FOR COMPONENT INSTALLATION ELECTRICAL MODULES 01UBA9010/20",5121,"HK1003-Rev.0E-3",TT_Mile,"55902",-,-,-,0,TK_NotStart,24/01/2022,,24/01/2022,,"SI20BBA4-10 FS","SI20BBA4-10","SI20UBA3C20 FS","SI20UBA3C20",77,,77,,18,,18,,46,912,"HK1003 -Blackpoint D2 - Rev.0E DD30092021"
1-2920,SI20UBA3C20,"INSTALL. COMP., INT. CABLING, FIRE PROT., SHOP TEST ELECTRICAL MODULES 01UBA9010/20",5121,"HK1003-Rev.0E-3",TT_Task,"55902",-,-,-,0,TK_NotStart,24/01/2022,,10/04/2022,,"SI20UBA3C10 FS,SI20UBA3C5 FS,SI20UBA3C15 FS,SP--B--2-13 FS,SI20UBA2K2 FS","SI20UBA3C10,SI20UBA3C5,SI20UBA3C15,SP--B--2-13,SI20UBA2K2","SI20UBA3C25 FS","SI20UBA3C25",77,,88,,18,,20,,46,912,"HK1003 -Blackpoint D2 - Rev.0E DD30092021"
1-2921,SI20UBA3C5,"MANUFACTURING ELECTRICAL MODULES 01UBA9010/20",5121,"HK1003-Rev.0E-3",TT_Task,"55902",-,-,-,40,TK_Active,19/07/2021,19/07/2021,16/01/2022,,"SI--UBA2G85 SS,SI--2222-30 FS","SI--UBA2G85,SI--2222-30","SI20UBA3C10 FS,SI20UBA3C20 FS,SI20UBA3K20#1 SS","SI20UBA3C10,SI20UBA3C20,SI20UBA3K20#1",50,50,76,,11,11,17,,22,968,"HK1003 -Blackpoint D2 - Rev.0E DD30092021"
1-2922,SI20UBA3C35,"TRANSPORT ELECTRICAL MODULES 01UBA9010/20",5121,"HK1003-Rev.0E-3",TT_Task,"55902",-,-,-,0,TK_NotStart,02/05/2022,,26/06/2022,,"SI20UBA3C40 FS","SI20UBA3C40","SI20UBA4C-5 FS","SI20UBA4C-5",91,,99,,21,,23,,61,912,"HK1003 -Blackpoint D2 - Rev.0E DD30092021"
1-2923,SI20UBA3C40,"(RFS) READY FOR SHIPMENT ELECTRICAL MODULES 01UBA9010/20",5121,"HK1003-Rev.0E-3",TT_FinMile,"55902",-,-,-,0,TK_NotStart,01/05/2022,,01/05/2022,,"SI20UBA3C30 FS","SI20UBA3C30","SI20UBA3C35 FS","SI20UBA3C35",91,,91,,21,,21,,60,912,"HK1003 -Blackpoint D2 - Rev.0E DD30092021"
1-2924,SI20UBA3C30,"LOGISTICS AND CUSTOMS PREPARATION ELECTRICAL MODULES 01UBA9010/20",5121,"HK1003-Rev.0E-3",TT_Task,"55902",-,-,-,0,TK_NotStart,04/04/2022,,01/05/2022,,"SI20UBA3C25 FS","SI20UBA3C25","SI20UBA3C40 FS","SI20UBA3C40",87,,91,,20,,21,,55,912,"HK1003 -Blackpoint D2 - Rev.0E DD30092021"
1-2925,SI20UBA3C25,"TIMES OF COMPLETION (FINAL DATA IN KANLOG) ELECTRICAL MODULES 01UBA9010/20",5121,"HK1003-Rev.0E-3",TT_FinMile,"55902",-,-,-,0,TK_NotStart,04/04/2022,,04/04/2022,,"SI20UBA3C20 FS","SI20UBA3C20","SI20UBA3C30 FS,SI20UBA3K20#1 FF","SI20UBA3C30,SI20UBA3K20#1",87,,87,,20,,20,,56,912,"HK1003 -Blackpoint D2 - Rev.0E DD30092021"
1-2926,SI20UBA2C-65,"HANDRAILS AND GRATING DWGS & CONNECTION FORCE REPORT 01UBA9010/20",5121,"HK1003-Rev.0E-3",TT_Task,"55902",-,-,-,0,TK_NotStart,23/12/2021,,12/01/2022,,"SI20UBA2C-60 FF","SI20UBA2C-60","SI20UBA2C-80 FS,SI20UBA2C-70 FS","SI20UBA2C-80,SI20UBA2C-70",72,,75,,16,,17,,43,392,"HK1003 -Blackpoint D2 - Rev.0E DD30092021"
1-2927,SI20UBA2C-15,"BASIC BUILDING DESIGN INCL. 3D MODEL 01UBA9010/20",5121,"HK1003-Rev.0E-3",TT_Task,"55902",-,-,-,100,TK_Complete,20/05/2021,20/05/2021,09/06/2021,09/06/2021,"SI20UBA2C-10 FS,SI--UBA2-81 SS","SI20UBA2C-10,SI--UBA2-81","SI20UBA2C-20 FS,SI20UBA2C-25 FS","SI20UBA2C-20,SI20UBA2C-25",41,41,44,44,9,9,10,10,13,,"HK1003 -Blackpoint D2 - Rev.0E DD30092021"
1-2928,SI20UBA7C-25,"ELECTRICAL COMMISSIONING 01UBA9010/20",5121,"HK1003-Rev.0E-3",TT_Task,"55902",-,-,-,0,TK_NotStart,14/02/2023,,20/02/2023,,"SI20UBA7C-20 FS,SI--2222-35 FS,SI20SGM8-32 SS,SI20SGC8-28 SS,SI20TPI12A8-30 FS,SI20TPI13A8-30 FS,SI20TPI1A8-30 FS,SI20TPI4A8-30 FS,SI20TPI5A8-30 FS,SI20TPI10A8-30 FS","SI20UBA7C-20,SI--2222-35,SI20SGM8-32,SI20SGC8-28,SI20TPI12A8-30,SI20TPI13A8-30,SI20TPI1A8-30,SI20TPI4A8-30,SI20TPI5A8-30,SI20TPI10A8-30","SI20BBA7-51 SS,SI20BBA7-55 SS","SI20BBA7-51,SI20BBA7-55",132,,133,,30,,31,,90,232,"HK1003 -Blackpoint D2 - Rev.0E DD30092021"
1-2929,SI20UBA2C-5,"DESIGN INPUT (FINAL LOAD DATA) FROM VENDOR FOR 01UBA9010/20  AVAILABLE",5121,"HK1003-Rev.0E-3",TT_FinMile,"55902",-,-,-,100,TK_Complete,23/06/2021,23/06/2021,23/06/2021,23/06/2021,"SI--UBA2K60 FS","SI--UBA2K60","SI20UBA2C-60 FS,SI20UBA2C-25 FS,SI20UBA2C-55 FS,SI20UBA2C-10 FS","SI20UBA2C-60,SI20UBA2C-25,SI20UBA2C-55,SI20UBA2C-10",46,46,46,46,10,10,10,10,18,,"HK1003 -Blackpoint D2 - Rev.0E DD30092021"
1-2930,SI20UBA5C-45,"(RFE) STEEL STRUCTURE 01UBA9010/20",5121,"HK1003-Rev.0E-3",TT_FinMile,"55902",-,-,-,0,TK_NotStart,23/09/2022,,23/09/2022,,"SI20UBA5C-35 FS","SI20UBA5C-35","SI20UBA5-98 FS,SI20UBA7C-32 FS,SI20UBA7C-32 FF","SI20UBA5-98,SI20UBA7C-32,SI20UBA7C-32",111,,111,,26,,26,,81,392,"HK1003 -Blackpoint D2 - Rev.0E DD30092021"
1-2931,SI20UBA2C-55,"(MS3) STEEL STRUCTURE FINAL DIMENSIONS, LOADS AVAILABLE 01UBA9010/20",5121,"HK1003-Rev.0E-3",TT_FinMile,"55902",-,-,-,100,TK_Complete,11/05/2021,11/05/2021,11/05/2021,11/05/2021,"SI20UBA2C-5 FS","SI20UBA2C-5","SI20UBA2C-60 FS,SI20UBA2B-39 FS","SI20UBA2C-60,SI20UBA2B-39",40,40,40,40,9,9,9,9,12,,"HK1003 -Blackpoint D2 - Rev.0E DD30092021"
1-2932,SI20UBA2C-80,"(F) DETAIL DESIGN STEEL STRUCTURE WITH CONTRACTOR 01UBA9010/20",5121,"HK1003-Rev.0E-3",TT_FinMile,"55902",-,-,-,0,TK_NotStart,03/06/2022,,03/06/2022,,"SI20UBA2C-65 FS,SI20UBA2C-60 FS,SI20UBA2C-75 FS","SI20UBA2C-65,SI20UBA2C-60,SI20UBA2C-75","SI20UBA3C-25 FS","SI20UBA3C-25",95,,95,,22,,22,,68,392,"HK1003 -Blackpoint D2 - Rev.0E DD30092021"
1-2933,SI20UBA2C-60,"DETAIL DESIGN STEEL STRUCTURE 01UBA9010/20",5121,"HK1003-Rev.0E-3",TT_Task,"55902",-,-,-,0,TK_NotStart,29/11/2021,,12/01/2022,,"SI20UBA2C-5 FS,SI20UBA2C-10 FS,SI20UBA2C-20 FS,SI20UBA2C-55 FS,SI20UBA2B-39 FS","SI20UBA2C-5,SI20UBA2C-10,SI20UBA2C-20,SI20UBA2C-55,SI20UBA2B-39","SI20UBA2C-80 FS,SI20UBA2C-70 FS,SI20UBA2C-65 FF","SI20UBA2C-80,SI20UBA2C-70,SI20UBA2C-65",69,,75,,16,,17,,40,392,"HK1003 -Blackpoint D2 - Rev.0E DD30092021"
1-2934,SI20UBA2C-10,"(MS3) CONCRETE STRUCTURE FINAL DIMENSIONS, LOADS AVAILABLE 01UBA9010/20",5121,"HK1003-Rev.0E-3",TT_FinMile,"55902",-,-,-,100,TK_Complete,23/06/2021,23/06/2021,23/06/2021,23/06/2021,"SI20UBA2C-5 FS","SI20UBA2C-5","SI20UBA2C-60 FS,SI20UBA2C-25 FS,SI20UBA2C-15 FS","SI20UBA2C-60,SI20UBA2C-25,SI20UBA2C-15",46,46,46,46,10,10,10,10,18,,"HK1003 -Blackpoint D2 - Rev.0E DD30092021"
1-2935,SI20UBA2C-30,"PREPARATION FOUNDATION GROUNDING DWGS 01UBA9010/20",5121,"HK1003-Rev.0E-3",TT_Task,"55902",-,-,-,60,TK_Active,25/07/2021,25/07/2021,13/11/2021,,"SI20UBA2C-25 FF","SI20UBA2C-25","SI20UBA2C-50 FS","SI20UBA2C-50",51,51,67,,11,11,15,,23,2128,"HK1003 -Blackpoint D2 - Rev.0E DD30092021"
1-2936,SI20UBA2C-25,"DETAIL DESIGN CONCRETE STRUCTURE 01UBA9010/20",5121,"HK1003-Rev.0E-3",TT_Task,"55902",-,-,-,69,TK_Active,24/06/2021,24/06/2021,13/11/2021,,"SI20UBA2C-15 FS,SI20UBA2C-5 FS,SI20UBA2C-20 FS,SI20UBA2C-10 FS,SI--UE2-E38 FS","SI20UBA2C-15,SI20UBA2C-5,SI20UBA2C-20,SI20UBA2C-10,SI--UE2-E38","SI20UBA2C-30 FF,SI20UBA2C-50 FS,SI20UBA2C-35 FS","SI20UBA2C-30,SI20UBA2C-50,SI20UBA2C-35",46,46,67,,10,10,15,,19,392,"HK1003 -Blackpoint D2 - Rev.0E DD30092021"
1-2937,SI20UBA5C-30,"(HS) START ERECTION STEEL STRUCTURE 01UBA9010/20",5121,"HK1003-Rev.0E-3",TT_Mile,"55902",-,-,-,0,TK_NotStart,10/09/2022,,10/09/2022,,"SI20UBA3C-25 FS,SI20UBA5C-10 FS,SI20UBA7C-15 SS","SI20UBA3C-25,SI20UBA5C-10,SI20UBA7C-15","SI20UBA5C-35 FS","SI20UBA5C-35",110,,110,,25,,25,,80,392,"HK1003 -Blackpoint D2 - Rev.0E DD30092021"
1-2938,SI20UBA5C-35,"ERECTION STEEL PLATFORMS 01UBA9010/20",5121,"HK1003-Rev.0E-3",TT_Task,"55902",-,-,-,0,TK_NotStart,10/09/2022,,23/09/2022,,"SI20UBA5C-30 FS","SI20UBA5C-30","SI20UBA5C-45 FS","SI20UBA5C-45",110,,111,,25,,26,,80,392,"HK1003 -Blackpoint D2 - Rev.0E DD30092021"
1-2939,SI20UBA3C-25,"FABRICATION DESIGN FABRICATION TRANSPORT STEEL STRUCTURE 01UBA9010/20",5121,"HK1003-Rev.0E-3",TT_Task,"55902",-,-,-,0,TK_NotStart,04/06/2022,,09/09/2022,,"SI20UBA2C-80 FS","SI20UBA2C-80","SI20UBA5C-30 FS","SI20UBA5C-30",96,,109,,22,,25,,68,392,"HK1003 -Blackpoint D2 - Rev.0E DD30092021"
1-2940,SI20UBA7C-15,"INSTALLATION ELECTRICAL MODULES 01UBA9010/20",5121,"HK1003-Rev.0E-3",TT_Task,"55902",-,-,-,0,TK_NotStart,12/07/2022,,21/07/2022,,"SI20BZP7-45 SS,SI20UBA4C-5 FS,SI20UBA7C-10 FS","SI20BZP7-45,SI20UBA4C-5,SI20UBA7C-10","SI20UBA7C-20 FS,SI20SGC6J18 FS,SI20SGM6-17 FS,SI20SGY7A17 FS,SI20TP-259& FS,SI20BZK7B28 FS,SI20BZL7A18 FS,SI20BZK7B33 FS,SI20UBA5C-30 SS,SI20BZK7B01 FS","SI20UBA7C-20,SI20SGC6J18,SI20SGM6-17,SI20SGY7A17,SI20TP-259&,SI20BZK7B28,SI20BZL7A18,SI20BZK7B33,SI20UBA5C-30,SI20BZK7B01",101,,102,,23,,23,,73,816,"HK1003 -Blackpoint D2 - Rev.0E DD30092021"
1-2941,SI20UBA7C-20,"(TOP-90UBA9) POWER CONTROL CENTER (ELECTRICAL MODULES) - 01UBA9010/20",5121,"HK1003-Rev.0E-3",TT_FinMile,"55902",-,-,-,0,TK_NotStart,13/02/2023,,13/02/2023,,"SI20UBA7C-15 FS,SI20SGY7A17 FS,SI20BZL7A18 FS","SI20UBA7C-15,SI20SGY7A17,SI20BZL7A18","SI20UBA7C-25 FS","SI20UBA7C-25",132,,132,,30,,30,,90,232,"HK1003 -Blackpoint D2 - Rev.0E DD30092021"
1-2942,SI20UBA2C-20,"PLANT DESIGN INPUT FOR 01UBA9010/20  AVAILABLE",5121,"HK1003-Rev.0E-3",TT_FinMile,"55902",-,-,-,100,TK_Complete,09/06/2021,09/06/2021,09/06/2021,09/06/2021,"SI20UBA2C-15 FS","SI20UBA2C-15","SI20UBA2C-25 FS,SI20UBA2C-60 FS","SI20UBA2C-25,SI20UBA2C-60",44,44,44,44,10,10,10,10,16,,"HK1003 -Blackpoint D2 - Rev.0E DD30092021"
1-2943,SI20UBA2C-50,"(F) CONCRETE STRUCTURE DWGS ON SITE RELEASED FOR EXECUTION 01UBA9010/20",5121,"HK1003-Rev.0E-3",TT_FinMile,"55902",-,-,-,0,TK_NotStart,10/03/2022,,10/03/2022,,"SI20UBA2C-30 FS,SI20UBA2C-25 FS,SI20UBA2C-45 FS","SI20UBA2C-30,SI20UBA2C-25,SI20UBA2C-45","SI20UBA5C-5 FS","SI20UBA5C-5",83,,83,,19,,19,,52,1192,"HK1003 -Blackpoint D2 - Rev.0E DD30092021"
1-2944,SI20UBA5C-20,"(RFE) FOUNDATION 01UBA9010/20",5121,"HK1003-Rev.0E-3",TT_FinMile,"55902",-,-,-,0,TK_NotStart,21/10/2022,,21/10/2022,,"SI20UBA5C-10 FS,SI20UBA5-98 FS","SI20UBA5C-10,SI20UBA5-98","SI20B--8-52 FS","SI20B--8-52",115,,115,,27,,27,,83,1328,"HK1003 -Blackpoint D2 - Rev.0E DD30092021"
1-2945,SI20UBA5C-5,"WORK PREPARATION / EXCAVATION FOUNDATION 01UBA9010/20",5121,"HK1003-Rev.0E-3",TT_Task,"55902",-,-,-,0,TK_NotStart,21/03/2022,,03/04/2022,,"SI20UBA2C-50 FS,SI-----5-21& FS,SI-----5-20 FS,SI20UBY5-53 SS,SI-P222-84 FS,SI-P222-128 FS,SI20UBA2C-81 FS","SI20UBA2C-50,SI-----5-21&,SI-----5-20,SI20UBY5-53,SI-P222-84,SI-P222-128,SI20UBA2C-81","SI20UBA5C-15 FS,SI20UTG5-60 SS,SI-P222-131# FF,SI-P222-131# SS","SI20UBA5C-15,SI20UTG5-60,SI-P222-131#,SI-P222-131#",85,,87,,19,,20,,53,1192,"HK1003 -Blackpoint D2 - Rev.0E DD30092021"
1-2946,SI20UBA5C-10,"CONSTRUCTION FOUNDATION  01UBA9010/20",5121,"HK1003-Rev.0E-3",TT_Task,"55902",-,-,-,0,TK_NotStart,04/04/2022,,08/05/2022,,"SI20UBA5C-15 FS","SI20UBA5C-15","SI20UBA5C-20 FS,SI20UBA5-96 FS,SI20UBA5C-30 FS,SI20BZP7-45 FS,SI20UBA5-99 FS","SI20UBA5C-20,SI20UBA5-96,SI20UBA5C-30,SI20BZP7-45,SI20UBA5-99",87,,92,,20,,21,,56,1192,"HK1003 -Blackpoint D2 - Rev.0E DD30092021"
1-2947,SI20UBA5C-15,"(H) START PLACING FORMWORK 01UBA9010/20",5121,"HK1003-Rev.0E-3",TT_Mile,"55902",-,-,-,0,TK_NotStart,04/04/2022,,04/04/2022,,"SI20UBA5C-5 FS,SI20UBA2C-82 FS","SI20UBA5C-5,SI20UBA2C-82","SI20UBA5C-10 FS","SI20UBA5C-10",87,,87,,20,,20,,56,1192,"HK1003 -Blackpoint D2 - Rev.0E DD30092021"
1-2948,SI20BZP7-45,"ERECTION CABLE TRAYS BELOW ELECTRICAL MODULES 01UBA9010/20",5121,"HK1003-Rev.0E-3",TT_Task,"55902",-,-,-,0,TK_NotStart,09/05/2022,,22/05/2022,,"SI--BZP4B40 FS,SI20BZP7-26 FS,SI--PEE7-20 FS,SI20UBA5C-10 FS,SI20UBA5-99 FS","SI--BZP4B40,SI20BZP7-26,SI--PEE7-20,SI20UBA5C-10,SI20UBA5-99","SI20UBA7C-15 SS,SI20UBA7C-10 FS,SI20UBA5-96 FS,SI20BZP7B10# FF,SI20BZP7B10# SS,SI20BZK7D25 FS,SI20BZP7-196 FS,SI20BZK7B48 FS","SI20UBA7C-15,SI20UBA7C-10,SI20UBA5-96,SI20BZP7B10#,SI20BZP7B10#,SI20BZK7D25,SI20BZP7-196,SI20BZK7B48",92,,94,,21,,21,,64,1192,"HK1003 -Blackpoint D2 - Rev.0E DD30092021"
1-2949,SI20UBA2C-35,"CLIENT - REVIEW - DETAIL DESIGN CONCRETE - 01UBA9010/20",5121,"HK1003-Rev.0E-3",TT_Task,"55902",-,-,-,0,TK_NotStart,14/11/2021,,08/12/2021,,"SI20UBA2C-25 FS","SI20UBA2C-25","SI20UBA2C-40 SS","SI20UBA2C-40",67,,70,,15,,16,,38,392,"HK1003 -Blackpoint D2 - Rev.0E DD30092021"
1-2950,SI20UBA2C-40,"BD - SUBMISSION & APPROVAL - DETAIL DESIGN CONCRETE - 01UBA9010/20",5121,"HK1003-Rev.0E-3",TT_Task,"55902",-,-,-,0,TK_NotStart,14/11/2021,,12/01/2022,,"SI20UBA2C-35 SS,SI-P221-315& FS,SI--UBA2-96 SS,SI--2222-141 FS","SI20UBA2C-35,SI-P221-315&,SI--UBA2-96,SI--2222-141","SI20UBA2C-45 FS,SI--UBA2-102 SS,SI20UBA2C-70 FS,SI20UBA2C-81 FS","SI20UBA2C-45,SI--UBA2-102,SI20UBA2C-70,SI20UBA2C-81",67,,75,,15,,17,,38,392,"HK1003 -Blackpoint D2 - Rev.0E DD30092021"
1-2951,SI20UBA2C-45,"BD - CONSENT LETTER - DESIGN 01UBA9010/20",5121,"HK1003-Rev.0E-3",TT_Task,"55902",-,-,-,0,TK_NotStart,13/01/2022,,09/02/2022,,"SI20UBA2C-40 FS","SI20UBA2C-40","SI20UBA2C-50 FS,SI20UBA2C-82 FS","SI20UBA2C-50,SI20UBA2C-82",75,,79,,17,,18,,45,1424,"HK1003 -Blackpoint D2 - Rev.0E DD30092021"
1-2952,SI20UBA4C-5,"(OTD-OS) ON SITE ELECTRICAL MODULES 01UBA9010/20",5121,"HK1003-Rev.0E-3",TT_FinMile,"55902",-,-,-,0,TK_NotStart,26/06/2022,,26/06/2022,,"SI20UBA3C35 FS","SI20UBA3C35","SI20UBA7C-15 FS,SI20UBA7C-10 FS,SI20UBA5-96 FS","SI20UBA7C-15,SI20UBA7C-10,SI20UBA5-96",99,,99,,23,,23,,71,912,"HK1003 -Blackpoint D2 - Rev.0E DD30092021"
1-2953,SI20UBA2C-70,"BD - SUBMISSION & APPROVAL - DETAIL DESIGN STEEL 01UBA9010/20",5121,"HK1003-Rev.0E-3",TT_Task,"55902",-,-,-,0,TK_NotStart,13/01/2022,,13/03/2022,,"SI20UBA2C-60 FS,SI20UBA2C-65 FS,SI-P221-555& FS,SI20UBA2C-40 FS,SI--2222-141 FS,SI--2222-143& FS","SI20UBA2C-60,SI20UBA2C-65,SI-P221-555&,SI20UBA2C-40,SI--2222-141,SI--2222-143&","SI20UBA2C-75 FS","SI20UBA2C-75",75,,84,,17,,19,,45,392,"HK1003 -Blackpoint D2 - Rev.0E DD30092021"
1-2954,SI20UBA2C-75,"BD - CONSENT LETTER - DETAIL DESIGN STEEL 01UBA9010/20",5121,"HK1003-Rev.0E-3",TT_Task,"55902",-,-,-,0,TK_NotStart,14/03/2022,,10/04/2022,,"SI20UBA2C-70 FS","SI20UBA2C-70","SI20UBA2C-80 FS","SI20UBA2C-80",84,,88,,19,,20,,52,392,"HK1003 -Blackpoint D2 - Rev.0E DD30092021"
1-2955,SI20UBA7C-10,"PLACING ELECTRICAL MODULES 01UBA9010/20",5121,"HK1003-Rev.0E-3",TT_Task,"55902",-,-,-,0,TK_NotStart,09/07/2022,,11/07/2022,,"SI20UBA4C-5 FS,SI20UBA5-96 FS,SI20BZP7-45 FS,SI--UBA2K05 FS,SI20UBA7-34 FS","SI20UBA4C-5,SI20UBA5-96,SI20BZP7-45,SI--UBA2K05,SI20UBA7-34","SI20UBA7C-15 FS,SI20UBA5-98 FS","SI20UBA7C-15,SI20UBA5-98",101,,101,,23,,23,,73,816,"HK1003 -Blackpoint D2 - Rev.0E DD30092021"
1-2956,SI20UTG5-62,"(H) START PLACING FORMWORK 20UTG06",5121,"HK1003-Rev.0E-3",TT_Mile,"55902",-,-,-,0,TK_NotStart,04/04/2022,,04/04/2022,,"SI20UTG5-60 FS,SI20UTG2-102 FS","SI20UTG5-60,SI20UTG2-102","SI20UTG5-64 FS","SI20UTG5-64",87,,87,,20,,20,,56,2824,"HK1003 -Blackpoint D2 - Rev.0E DD30092021"
1-2957,SI20UTG5-60,"WORK PREPARATION, EXCAVATION 20UTG06",5121,"HK1003-Rev.0E-3",TT_Task,"55902",-,-,-,0,TK_NotStart,21/03/2022,,03/04/2022,,"SI20UBA5C-5 SS,SI20UTG2-88 FS,SI-----5-21& FS,SI-----5-20 FS,SI-P222-84 FS,SI20UTG2-101 FS","SI20UBA5C-5,SI20UTG2-88,SI-----5-21&,SI-----5-20,SI-P222-84,SI20UTG2-101","SI20UTG5-62 FS,SI-P222-131# FF,SI-P222-131# SS","SI20UTG5-62,SI-P222-131#,SI-P222-131#",85,,87,,19,,20,,53,2824,"HK1003 -Blackpoint D2 - Rev.0E DD30092021"
1-2958,SI20UTG5-66,"(RFE) FOUNDATION 20UTG06",5121,"HK1003-Rev.0E-3",TT_FinMile,"55902",-,-,-,0,TK_NotStart,17/04/2022,,17/04/2022,,"SI20UTG5-64 FS","SI20UTG5-64","SI20QJ-6B42 FS,SI20UTG2S-136 FS","SI20QJ-6B42,SI20UTG2S-136",89,,89,,20,,20,,58,2824,"HK1003 -Blackpoint D2 - Rev.0E DD30092021"
1-2959,SI20UTG5-64,"CONSTRUCTION FOUNDATION 20UTG06",5121,"HK1003-Rev.0E-3",TT_Task,"55902",-,-,-,0,TK_NotStart,04/04/2022,,17/04/2022,,"SI20UTG5-62 FS","SI20UTG5-62","SI20UTG5-66 FS","SI20UTG5-66",87,,89,,20,,20,,56,2824,"HK1003 -Blackpoint D2 - Rev.0E DD30092021"
1-2960,SI20UBH5E49,"(RFE) FOUNDATION 20UBH02",5121,"HK1003-Rev.0E-3",TT_FinMile,"55902",-,-,-,0,TK_NotStart,27/05/2022,,27/05/2022,,"SI20UBH5-24 FS","SI20UBH5-24","SI20GM-8F10 FS","SI20GM-8F10",94,,94,,22,,22,,66,2144,"HK1003 -Blackpoint D2 - Rev.0E DD30092021"
1-2961,SI20UBH5-24,"CONSTRUCTION OIL COLLECTION PIT / OIL SEPARATOR 20UBH02",5121,"HK1003-Rev.0E-3",TT_Task,"55902",-,-,-,0,TK_NotStart,09/04/2022,,27/05/2022,,"SI20UBH5-25 FS","SI20UBH5-25","SI20UBH5E49 FS","SI20UBH5E49",88,,94,,20,,22,,57,2144,"HK1003 -Blackpoint D2 - Rev.0E DD30092021"
1-2962,SI20UBH5-25,"(H) START PLACING FORMWORK 20UBH02",5121,"HK1003-Rev.0E-3",TT_Mile,"55902",-,-,-,0,TK_NotStart,09/04/2022,,09/04/2022,,"SI20UBH5-23 FS,SI20UBH2-99 FS","SI20UBH5-23,SI20UBH2-99","SI20UBH5-24 FS","SI20UBH5-24",88,,88,,20,,20,,57,2144,"HK1003 -Blackpoint D2 - Rev.0E DD30092021"
1-2963,SI20UBH5-23,"WORK PREPARATION, EXCAVATION 20UBH02",5121,"HK1003-Rev.0E-3",TT_Task,"55902",-,-,-,0,TK_NotStart,26/03/2022,,08/04/2022,,"SI20UMX5-06 SS,SI20UBH2-86 FS,SI-----5-21& FS,SI-----5-20 FS,SI-P222-84 FS,SI20UBH2-98 FS","SI20UMX5-06,SI20UBH2-86,SI-----5-21&,SI-----5-20,SI-P222-84,SI20UBH2-98","SI20UBH5-25 FS,SI-P222-131# FF,SI-P222-131# SS","SI20UBH5-25,SI-P222-131#,SI-P222-131#",86,,87,,20,,20,,54,2144,"HK1003 -Blackpoint D2 - Rev.0E DD30092021"
1-2964,SI20SMG2-86,"(DF) INPUT FOR VEL OTHER CRANES AND HOIST",5121,"HK1003-Rev.0E-3",TT_Mile,"55902",-,-,-,100,TK_Complete,10/06/2021,10/06/2021,10/06/2021,10/06/2021,"SI20SMG2-87 FS","SI20SMG2-87","SP--B--2-61 FS","SP--B--2-61",44,44,44,44,10,10,10,10,16,,"HK1003 -Blackpoint D2 - Rev.0E DD30092021"
1-2965,SI20SA-2-86,"(DF) INPUT FOR VEL HVAC SYSTEM SA",5121,"HK1003-Rev.0E-3",TT_Mile,"55902",-,-,-,100,TK_Complete,02/08/2021,02/08/2021,02/08/2021,02/08/2021,"SI20SA-2-80 FS","SI20SA-2-80","SP--B--2-61 FS","SP--B--2-61",52,52,52,52,12,12,12,12,24,,"HK1003 -Blackpoint D2 - Rev.0E DD30092021"
1-2966,SP20MPB2A98,"(DF) INPUT FOR VEL ENCLOSURE 20MPB",5121,"HK1003-Rev.0E-3",TT_Mile,"55902",-,-,-,100,TK_Complete,25/06/2021,25/06/2021,25/06/2021,25/06/2021,"SP20MPB2A94 FS","SP20MPB2A94","SP--B--2-52 FS","SP--B--2-52",46,46,46,46,10,10,10,10,19,,"HK1003 -Blackpoint D2 - Rev.0E DD30092021"
1-2967,SP--MB-2-87,"(DF) INPUT FOR VEL (BZ) GT INCL. GT ENGINEERING",5121,"HK1003-Rev.0E-3",TT_Mile,"55902",-,-,-,100,TK_Complete,02/07/2021,02/07/2021,02/07/2021,02/07/2021,"SP--MB-2-85 FS","SP--MB-2-85","SP--B--2-52 FS","SP--B--2-52",47,47,47,47,11,11,11,11,20,,"HK1003 -Blackpoint D2 - Rev.0E DD30092021"
1-2968,SP20MBL2-98,"(DF) INPUT FOR VEL AIR INTAKE SYSTEM MBL",5121,"HK1003-Rev.0E-3",TT_Mile,"55902",-,-,-,100,TK_Complete,18/06/2021,18/06/2021,18/06/2021,18/06/2021,"SP20MBL2-85 FS","SP20MBL2-85","SP--B--2-52 FS","SP--B--2-52",45,45,45,45,10,10,10,10,18,,"HK1003 -Blackpoint D2 - Rev.0E DD30092021"
1-2969,SP20MBP2A86,"(DF) INPUT FOR VEL FUEL GAS STRAINER SKID MBP",5121,"HK1003-Rev.0E-3",TT_Mile,"55902",-,-,-,100,TK_Complete,22/06/2021,22/06/2021,22/06/2021,22/06/2021,"SP20MBP2A80 FS","SP20MBP2A80","SP--B--2-52 FS,SP20MBP2A81 FS","SP--B--2-52,SP20MBP2A81",46,46,46,46,10,10,10,10,18,,"HK1003 -Blackpoint D2 - Rev.0E DD30092021"
1-2970,SP20MKW2-86,"(DF) INPUT FOR VEL MK- AUXILIARIES SYSTEMS",5121,"HK1003-Rev.0E-3",TT_Mile,"55902",-,-,-,100,TK_Complete,18/06/2021,18/06/2021,18/06/2021,18/06/2021,"SP20MKW2-85 FS","SP20MKW2-85","SP--B--2-52 FS","SP--B--2-52",45,45,45,45,10,10,10,10,18,,"HK1003 -Blackpoint D2 - Rev.0E DD30092021"
1-2971,SP20MAJ2-86,"(DF) INPUT FOR VEL  AIR REMOVAL SYSTEM MAJ",5121,"HK1003-Rev.0E-3",TT_Mile,"55902",-,-,-,100,TK_Complete,18/06/2021,18/06/2021,18/06/2021,18/06/2021,"SP20MAJ2-85 FS","SP20MAJ2-85","SP--B--2-52 FS","SP--B--2-52",45,45,45,45,10,10,10,10,18,,"HK1003 -Blackpoint D2 - Rev.0E DD30092021"
1-2972,SP20MAV2-86,"(DF) INPUT FOR VEL LUBE OIL MODULE MAV",5121,"HK1003-Rev.0E-3",TT_Mile,"55902",-,-,-,100,TK_Complete,18/06/2021,18/06/2021,18/06/2021,18/06/2021,"SP20MAV2-85 FS","SP20MAV2-85","SP--B--2-52 FS","SP--B--2-52",45,45,45,45,10,10,10,10,18,,"HK1003 -Blackpoint D2 - Rev.0E DD30092021"
1-2973,SP20MAW2-86,"(DF) INPUT FOR VEL GLAND STEAM CONDENSER MAW",5121,"HK1003-Rev.0E-3",TT_Mile,"55902",-,-,-,100,TK_Complete,18/06/2021,18/06/2021,18/06/2021,18/06/2021,"SP20MAW2-85 FS","SP20MAW2-85","SP--B--2-52 FS","SP--B--2-52",45,45,45,45,10,10,10,10,18,,"HK1003 -Blackpoint D2 - Rev.0E DD30092021"
1-2974,SP20MAX2-86,"(DF) INPUT FOR VEL ST HYDRAULIC SYSTEM MAX",5121,"HK1003-Rev.0E-3",TT_Mile,"55902",-,-,-,100,TK_Complete,12/06/2021,12/06/2021,12/06/2021,12/06/2021,"SP20MAX2-80 FS","SP20MAX2-80","SP--B--2-52 FS,SP20MAX2-85 FS","SP--B--2-52,SP20MAX2-85",45,45,45,45,10,10,10,10,17,,"HK1003 -Blackpoint D2 - Rev.0E DD30092021"
1-2975,SI20PAH2-87,"(DF) INPUT FOR VEL CONDENSER TUBE CLEANING SYSTEM 20PAH",5121,"HK1003-Rev.0E-3",TT_Mile,"55902",-,-,-,100,TK_Complete,24/06/2021,24/06/2021,24/06/2021,24/06/2021,"SI20PAH2-85 FS","SI20PAH2-85","SP--B--2-61 FS","SP--B--2-61",46,46,46,46,10,10,10,10,19,,"HK1003 -Blackpoint D2 - Rev.0E DD30092021"
1-2976,SI20LBG2C87,"(DF) INPUT FOR VEL EL. SUPERHEATER LBG",5121,"HK1003-Rev.0E-3",TT_Mile,"55902",-,-,-,100,TK_Complete,24/06/2021,24/06/2021,24/06/2021,24/06/2021,"SI20LBG2C85 FS","SI20LBG2C85","SP--B--2-61 FS","SP--B--2-61",46,46,46,46,10,10,10,10,19,,"HK1003 -Blackpoint D2 - Rev.0E DD30092021"
1-2977,SI--LDK2B88,"(DF) INPUT FOR VEL CONDENSATE POLISHING PLANT 20LD",5121,"HK1003-Rev.0E-3",TT_Mile,"55902",-,-,-,100,TK_Complete,16/06/2021,16/06/2021,16/06/2021,16/06/2021,"SI--LDK2B85 FS","SI--LDK2B85","SP--B--2-61 FS","SP--B--2-61",45,45,45,45,10,10,10,10,17,,"HK1003 -Blackpoint D2 - Rev.0E DD30092021"
1-2978,SI20HSJ2-94,"(DF) INPUT FOR VEL SCR SKID HSJ/HSK",5121,"HK1003-Rev.0E-3",TT_Mile,"55902",-,-,-,100,TK_Complete,03/05/2021,03/05/2021,03/05/2021,03/05/2021,"SI--3331-32 FS,SI20HS-2-89 FS,SI-----1-05 FS","SI--3331-32,SI20HS-2-89,SI-----1-05","SP--B--2-61 FS","SP--B--2-61",39,39,39,39,9,9,9,9,11,,"HK1003 -Blackpoint D2 - Rev.0E DD30092021"
1-2979,SI20ULY2-20,"PREPARATION FOUNDATION GROUNDING DWGS 20ULY01",5121,"HK1003-Rev.0E-3",TT_Task,"55902",-,-,-,100,TK_Complete,21/08/2021,21/08/2021,03/09/2021,03/09/2021,"SI20ULY2-15 FF","SI20ULY2-15","SI20ULY2-25 FS","SI20ULY2-25",55,55,56,56,12,12,13,13,27,,"HK1003 -Blackpoint D2 - Rev.0E DD30092021"
1-2980,SI20ULY2-10,"BASIC BUILDING DESIGN INCL. 3D MODEL 20ULY01",5121,"HK1003-Rev.0E-3",TT_Task,"55902",-,-,-,100,TK_Complete,12/06/2021,12/06/2021,08/07/2021,08/07/2021,"SI20ULY2-5 FF,SI20ULY2-5 FS","SI20ULY2-5,SI20ULY2-5","SI20ULY2-15 FS","SI20ULY2-15",45,45,48,48,10,10,11,11,17,,"HK1003 -Blackpoint D2 - Rev.0E DD30092021"
1-2981,SI20ULY5-50,"(H) START PLACING FORMWORK PIPE BRIDGE 20ULY01",5121,"HK1003-Rev.0E-3",TT_Mile,"55902",-,-,-,0,TK_NotStart,14/05/2022,,14/05/2022,,"SI20ULY5-45 FS,SI20ULY2-82 FS","SI20ULY5-45,SI20ULY2-82","SI20ULY5-55 FS","SI20ULY5-55",93,,93,,21,,21,,65,1400,"HK1003 -Blackpoint D2 - Rev.0E DD30092021"
1-2982,SI20ULY5-55,"CONSTRUCTION FOUNDATION PIPE BRIDGE 20ULY01",5121,"HK1003-Rev.0E-3",TT_Task,"55902",-,-,-,0,TK_NotStart,14/05/2022,,03/06/2022,,"SI20ULY5-50 FS","SI20ULY5-50","SI20ULY5-60 FS","SI20ULY5-60",93,,95,,21,,22,,65,1400,"HK1003 -Blackpoint D2 - Rev.0E DD30092021"
1-2983,SI20ULY5-60,"(RFE) FOUNDATION SLEEPER WAY 20ULY01",5121,"HK1003-Rev.0E-3",TT_FinMile,"55902",-,-,-,0,TK_NotStart,03/06/2022,,03/06/2022,,"SI20ULY5-55 FS","SI20ULY5-55","SI20ULY5-145 FS","SI20ULY5-145",95,,95,,22,,22,,68,1400,"HK1003 -Blackpoint D2 - Rev.0E DD30092021"
1-2984,SI20ULY2-5,"(MS3) CONCRETE STRUCTURE FINAL DIMENSIONS, LOADS AVAILABLE 20ULY01",5121,"HK1003-Rev.0E-3",TT_FinMile,"55902",-,-,-,100,TK_Complete,11/06/2021,11/06/2021,11/06/2021,11/06/2021,"SI-----1-05 FS,SI--UMY2-60 FS","SI-----1-05,SI--UMY2-60","SI20ULY2-10 FF,SI20ULY2-15 FS,SI20ULY2-10 FS","SI20ULY2-10,SI20ULY2-15,SI20ULY2-10",44,44,44,44,10,10,10,10,16,,"HK1003 -Blackpoint D2 - Rev.0E DD30092021"
1-2985,SI20ULY5-45,"WORK PREPARATION, EXCAVATION PIPE BRIDGE 20ULY01",5121,"HK1003-Rev.0E-3",TT_Task,"55902",-,-,-,0,TK_NotStart,30/04/2022,,13/05/2022,,"SI20ULY2-40 FS,SI20UBD5-05 SS,SI-----5-21& FS,SI-----5-20 FS,SI20ULY2-81 FS","SI20ULY2-40,SI20UBD5-05,SI-----5-21&,SI-----5-20,SI20ULY2-81","SI20ULY5-50 FS,SI-P222-131# FF,SI-P222-131# SS,SI20TPM26A6-20 SS","SI20ULY5-50,SI-P222-131#,SI-P222-131#,SI20TPM26A6-20",91,,92,,21,,21,,60,1400,"HK1003 -Blackpoint D2 - Rev.0E DD30092021"
1-2986,SI20ULY2-40,"(F) CONCRETE STRUCTURE DWGS ON SITE RELEASED FOR EXECUTION 20ULY01",5121,"HK1003-Rev.0E-3",TT_FinMile,"55902",-,-,-,0,TK_NotStart,29/04/2022,,29/04/2022,,"SI20ULY2-15 FS,SI20ULY2-35 FS","SI20ULY2-15,SI20ULY2-35","SI20ULY5-45 FS","SI20ULY5-45",90,,90,,21,,21,,60,1400,"HK1003 -Blackpoint D2 - Rev.0E DD30092021"
1-2987,SI20ULY2-15,"DETAIL DESIGN CONCRETE STRUCTURE 20ULY01",5121,"HK1003-Rev.0E-3",TT_Task,"55902",-,-,-,100,TK_Complete,09/07/2021,09/07/2021,03/09/2021,03/09/2021,"SI20ULY2-10 FS,SI20ULY2-5 FS","SI20ULY2-10,SI20ULY2-5","SI20ULY2-20 FF,SI20ULY2-40 FS,SI20ULY2-25 FS","SI20ULY2-20,SI20ULY2-40,SI20ULY2-25",48,48,56,56,11,11,13,13,21,,"HK1003 -Blackpoint D2 - Rev.0E DD30092021"
1-2988,SI20ULY2-25,"CLIENT - REVIEW - DETAIL DESIGN CONCRETE - 20ULY01",5121,"HK1003-Rev.0E-3",TT_Task,"55902",-,-,-,100,TK_Complete,04/09/2021,04/09/2021,28/09/2021,28/09/2021,"SI20ULY2-15 FS,SI20ULY2-20 FS","SI20ULY2-15,SI20ULY2-20","SI20ULY2-30 SS","SI20ULY2-30",57,57,60,60,13,13,14,14,28,,"HK1003 -Blackpoint D2 - Rev.0E DD30092021"
1-2989,SI20ULY2-30,"BD - SUBMISSION & APPROVAL - DETAIL DESIGN CONCRETE - 20ULY01",5121,"HK1003-Rev.0E-3",TT_Task,"55902",-,-,-,0,TK_NotStart,10/10/2021,,08/12/2021,,"SI20ULY2-25 SS,SI-P221-210& FS,SI20UEY2-85 SS","SI20ULY2-25,SI-P221-210&,SI20UEY2-85","SI20ULY2-35 FS,SI20ULY2-35 FF,SI20ULY2-81 FS","SI20ULY2-35,SI20ULY2-35,SI20ULY2-81",62,,70,,14,,16,,32,2312,"HK1003 -Blackpoint D2 - Rev.0E DD30092021"
1-2990,SI20ULY2-35,"BD - CONSENT LETTER - DESIGN  20ULY01",5121,"HK1003-Rev.0E-3",TT_Task,"55902",-,-,-,0,TK_NotStart,09/12/2021,,05/01/2022,,"SI20ULY2-30 FS,SI20ULY2-30 FF","SI20ULY2-30,SI20ULY2-30","SI20ULY2-40 FS,SI20ULY2-82 FS","SI20ULY2-40,SI20ULY2-82",70,,74,,16,,17,,41,2312,"HK1003 -Blackpoint D2 - Rev.0E DD30092021"
1-2991,SI20UBY2-20,"PREPARATION FOUNDATION GROUNDING DWGS UBY01",5121,"HK1003-Rev.0E-3",TT_Task,"55902",-,-,-,71,TK_Active,20/09/2021,20/09/2021,03/10/2021,,"SI20UBY2-15 FF","SI20UBY2-15","SI20UBY2-25 FS","SI20UBY2-25",59,59,61,,13,13,14,,29,1384,"HK1003 -Blackpoint D2 - Rev.0E DD30092021"
1-2992,SI20UBY2-10,"BASIC BUILDING DESIGN INCL. 3D MODEL UBY01",5121,"HK1003-Rev.0E-3",TT_Task,"55902",-,-,-,100,TK_Complete,30/07/2021,30/07/2021,19/08/2021,19/08/2021,"SI20UBY2-5 FS","SI20UBY2-5","SI20UBY2-15 FS","SI20UBY2-15",51,51,54,54,12,12,12,12,23,,"HK1003 -Blackpoint D2 - Rev.0E DD30092021"
1-2993,SI20UBY2-5,"(MS3) CONCRETE STRUCTURE FINAL DIMENSIONS, LOADS AVAILABLE UBY01",5121,"HK1003-Rev.0E-3",TT_FinMile,"55902",-,-,-,100,TK_Complete,30/07/2021,30/07/2021,30/07/2021,30/07/2021,"SI--UM-2-35 FS,SI--UR-2-35 FS,SI--B--2-66 FS,SI--B--2A55 FS","SI--UM-2-35,SI--UR-2-35,SI--B--2-66,SI--B--2A55","SI20UBY2-15 FS,SI20UBY2-10 FS","SI20UBY2-15,SI20UBY2-10",51,51,51,51,12,12,12,12,23,,"HK1003 -Blackpoint D2 - Rev.0E DD30092021"
1-2994,SI20UBY2-40,"(F) CONCRETE STRUCTURE DWGS ON SITE RELEASED FOR EXECUTION UBY01",5121,"HK1003-Rev.0E-3",TT_FinMile,"55902",-,-,-,0,TK_NotStart,03/06/2022,,03/06/2022,,"SI20UBY2-15 FS,SI20UBY2-35 FS","SI20UBY2-15,SI20UBY2-35","SI20UBY5-06 FS","SI20UBY5-06",95,,95,,22,,22,,68,144,"HK1003 -Blackpoint D2 - Rev.0E DD30092021"
1-2995,SI20UBY2-15,"DETAIL DESIGN CONCRETE STRUCTURE UBY01",5121,"HK1003-Rev.0E-3",TT_Task,"55902",-,-,-,91,TK_Active,20/08/2021,20/08/2021,03/10/2021,,"SI20UBY2-10 FS,SI20UBY2-5 FS","SI20UBY2-10,SI20UBY2-5","SI20UBY2-20 FF,SI20UBY2-40 FS,SI20UBY2-25 FS","SI20UBY2-20,SI20UBY2-40,SI20UBY2-25",54,54,61,,12,12,14,,26,1384,"HK1003 -Blackpoint D2 - Rev.0E DD30092021"
1-2996,SI20UBY2-25,"CLIENT - REVIEW - DETAIL DESIGN CONCRETE - UBY01",5121,"HK1003-Rev.0E-3",TT_Task,"55902",-,-,-,0,TK_NotStart,04/10/2021,,28/10/2021,,"SI20UBY2-15 FS,SI20UBY2-20 FS","SI20UBY2-15,SI20UBY2-20","SI20UBY2-30 SS","SI20UBY2-30",61,,64,,14,,15,,31,1384,"HK1003 -Blackpoint D2 - Rev.0E DD30092021"
1-2997,SI20UBY2-30,"BD - SUBMISSION & APPROVAL - DETAIL DESIGN CONCRETE - UBY01",5121,"HK1003-Rev.0E-3",TT_Task,"55902",-,-,-,0,TK_NotStart,19/10/2021,,17/12/2021,,"SI20UBY2-25 SS,SI20UBY2-54 SS,SI-P221-200& FS,SI--UBA2-96 SS","SI20UBY2-25,SI20UBY2-54,SI-P221-200&,SI--UBA2-96","SI20UBY2-35 FS,SI20UBY2-35 FF,SI20UBY2-70 FS","SI20UBY2-35,SI20UBY2-35,SI20UBY2-70",63,,71,,14,,16,,35,1264,"HK1003 -Blackpoint D2 - Rev.0E DD30092021"
1-2998,SI20UBY2-35,"BD - CONSENT LETTER - DESIGN  UBY01",5121,"HK1003-Rev.0E-3",TT_Task,"55902",-,-,-,0,TK_NotStart,18/12/2021,,14/01/2022,,"SI20UBY2-30 FS,SI20UBY2-30 FF","SI20UBY2-30,SI20UBY2-30","SI20UBY2-40 FS,SI20UBY2-71 FS","SI20UBY2-40,SI20UBY2-71",72,,75,,16,,17,,43,1264,"HK1003 -Blackpoint D2 - Rev.0E DD30092021"
1-2999,SI20BZP7-90,"ERECTION CABLE TRAYS ON 20UBY01",5121,"HK1003-Rev.0E-3",TT_Task,"55902",-,-,-,0,TK_NotStart,02/07/2022,,15/07/2022,,"SI20UBY5-48 FS,SI--BZP4B40 FS,SI20BZP7-26 FS,SI--PEE7-20 FS,SI20HB-6-44 FS","SI20UBY5-48,SI--BZP4B40,SI20BZP7-26,SI--PEE7-20,SI20HB-6-44","SI20BZK7A28 FS,SI20BZP7B10# FF,SI20BZP7B10# SS,SI20BZP7-105 FS","SI20BZK7A28,SI20BZP7B10#,SI20BZP7B10#,SI20BZP7-105",100,,101,,23,,23,,72,144,"HK1003 -Blackpoint D2 - Rev.0E DD30092021"
1-3000,SI20UBY5-52,"(RFE) FOUNDATION 20UBY02",5121,"HK1003-Rev.0E-3",TT_FinMile,"55902",-,-,-,0,TK_NotStart,12/08/2022,,12/08/2022,,"SI20UBY5-50 FS,SI20UBY5-50.03 FS","SI20UBY5-50,SI20UBY5-50.03","SI20BZP7-120 FS","SI20BZP7-120",105,,105,,24,,24,,77,1144,"HK1003 -Blackpoint D2 - Rev.0E DD30092021"
1-3001,SI20UBY5-50,"CONSTRUCTION FOUNDATION 20UBY02",5121,"HK1003-Rev.0E-3",TT_Task,"55902",-,-,-,0,TK_NotStart,15/07/2022,,28/07/2022,,"SI20UBY5-51 SS","SI20UBY5-51","SI20UBY5-52 FS","SI20UBY5-52",101,,103,,23,,24,,73,1264,"HK1003 -Blackpoint D2 - Rev.0E DD30092021"
1-3002,SI20UBY5-49,"WORK PREPARATION, EXCAVATION 20UBY02",5121,"HK1003-Rev.0E-3",TT_Task,"55902",-,-,-,0,TK_NotStart,01/07/2022,,14/07/2022,,"SI20UBY2-48 FS,SI20UBZ5-68 FS,SI-----5-21& FS,SI-----5-20 FS,SI20UBY2-46 FS,SI-P222-84 FS,SI20UBY2-68 FS,SI20UBN5-5 SS","SI20UBY2-48,SI20UBZ5-68,SI-----5-21&,SI-----5-20,SI20UBY2-46,SI-P222-84,SI20UBY2-68,SI20UBN5-5","SI20UBY5-51 FS,SI-P222-131# FF,SI-P222-131# SS","SI20UBY5-51,SI-P222-131#,SI-P222-131#",99,,101,,23,,23,,72,1144,"HK1003 -Blackpoint D2 - Rev.0E DD30092021"
1-3003,SI20UBY5-51,"(H) START PLACING FORMWORK 20UBY02",5121,"HK1003-Rev.0E-3",TT_Mile,"55902",-,-,-,0,TK_NotStart,15/07/2022,,15/07/2022,,"SI20UBY5-49 FS,SI20UBY2-69 FS","SI20UBY5-49,SI20UBY2-69","SI20UBY5-50 SS,SI20UBY5-50.00 FS","SI20UBY5-50,SI20UBY5-50.00",101,,101,,23,,23,,73,1144,"HK1003 -Blackpoint D2 - Rev.0E DD30092021"
1-3004,SI20UEX2-45,"BD - SUBMISSION & APPROVAL - DETAIL DESIGN CONCRETE - AMENDMENT 20UEX01",5121,"HK1003-Rev.0E-3",TT_Task,"55902",-,-,-,0,TK_NotStart,23/03/2022,,21/04/2022,,"SI-P221-195& FS,SI20UBY2-46 SS,SI--UBA2-96 SS,SI20UEX2-50 FS","SI-P221-195&,SI20UBY2-46,SI--UBA2-96,SI20UEX2-50","SI20UEX2-104 SS,SI20UEX2-110 FS","SI20UEX2-104,SI20UEX2-110",85,,89,,19,,20,,53,552,"HK1003 -Blackpoint D2 - Rev.0E DD30092021"
1-3005,SI20UEX2-40,"CLIENT - REVIEW - DETAIL DESIGN CONCRETE 20UEX01",5121,"HK1003-Rev.0E-3",TT_Task,"55902",-,-,-,0,TK_NotStart,11/12/2021,,04/01/2022,,"SI20UEX2-25 FS","SI20UEX2-25","SI20UEX2-109 SS","SI20UEX2-109",71,,74,,16,,17,,42,552,"HK1003 -Blackpoint D2 - Rev.0E DD30092021"
1-3006,SI20UEX2-50,"BD - CONSENT LETTER DETAIL DESIGN CONCRETE 20UEX01",5121,"HK1003-Rev.0E-3",TT_Task,"55902",-,-,-,0,TK_NotStart,09/02/2022,,22/03/2022,,"SI20UEX2-109 FS","SI20UEX2-109","SI20UEX2-70 FS,SI20UEX2-45 FS,SI20UEX2-111 FS","SI20UEX2-70,SI20UEX2-45,SI20UEX2-111",79,,85,,18,,19,,48,552,"HK1003 -Blackpoint D2 - Rev.0E DD30092021"
1-3007,SI20UBN2-25,"CLIENT - REVIEW - DETAIL DESIGN CONCRETE 20UBN",5121,"HK1003-Rev.0E-3",TT_Task,"55902",-,-,-,0,TK_NotStart,11/12/2021,,04/01/2022,,"SI20UBN2-20 FS,SI20UBN2-107 FS","SI20UBN2-20,SI20UBN2-107","SI20UBN2-35 FS,SI20UBN2-109 SS","SI20UBN2-35,SI20UBN2-109",71,,74,,16,,17,,42,952,"HK1003 -Blackpoint D2 - Rev.0E DD30092021"
1-3008,SI20UBN2-30,"BD - SUBMISSION & APPROVAL - DETAIL DESIGN CONCRETE -  AMENDMENT 20UBN",5121,"HK1003-Rev.0E-3",TT_Task,"55902",-,-,-,0,TK_NotStart,23/03/2022,,21/04/2022,,"SI-P221-180& FS,SI20UBY2-46 SS,SI--UBA2-96 SS,SI20UBN2-35 FS","SI-P221-180&,SI20UBY2-46,SI--UBA2-96,SI20UBN2-35","SI20UBN2-104 SS,SI20UBN2-111 FS","SI20UBN2-104,SI20UBN2-111",85,,89,,19,,20,,53,952,"HK1003 -Blackpoint D2 - Rev.0E DD30092021"
1-3009,SI20UBN2-35,"BD - CONSENT LETTER - DESIGN PRELIMINARY 20UBN",5121,"HK1003-Rev.0E-3",TT_Task,"55902",-,-,-,0,TK_NotStart,09/02/2022,,22/03/2022,,"SI20UBN2-109 FS,SI20UBN2-25 FS","SI20UBN2-109,SI20UBN2-25","SI20UBN2-40 FS,SI20UBN2-110 FS,SI20UBN2-30 FS","SI20UBN2-40,SI20UBN2-110,SI20UBN2-30",79,,85,,18,,19,,48,952,"HK1003 -Blackpoint D2 - Rev.0E DD30092021"
1-3010,SI--BAA2-86,"AUDIT AT  IPB MANUFACTURER",5121,"HK1003-Rev.0E-3",TT_Task,"55902",-,-,-,100,TK_Complete,02/05/2021,02/05/2021,29/05/2021,29/05/2021,"SI--BAA2-80 FS,SI--BAA2-21 FS","SI--BAA2-80,SI--BAA2-21","SI--BAA2-85 FS","SI--BAA2-85",39,39,43,43,9,9,10,10,10,,"HK1003 -Blackpoint D2 - Rev.0E DD30092021"
1-3011,SI20BZP7-120,"ERECTION CABLE TRAYS ON 20UBY02 INCL.UBN",5121,"HK1003-Rev.0E-3",TT_Task,"55902",-,-,-,0,TK_NotStart,13/08/2022,,17/08/2022,,"SI--BZP4B40 FS,SI20UBY5-52 FS,SI20BZP7-26 FS,SI--PEE7-20 FS,SI20BZP7-160 FS","SI--BZP4B40,SI20UBY5-52,SI20BZP7-26,SI--PEE7-20,SI20BZP7-160","SI20BZK7A28 FF,SI20BZP7B10# FF,SI20BZP7B10# SS,SI20BZK7F28 FS,SI20BZP7-184 FS","SI20BZK7A28,SI20BZP7B10#,SI20BZP7B10#,SI20BZK7F28,SI20BZP7-184",106,,106,,24,,24,,77,1144,"HK1003 -Blackpoint D2 - Rev.0E DD30092021"
1-3012,SI20BBT7-16,"ERECTION AUX. TRANSFORMER 20BBT",5121,"HK1003-Rev.0E-3",TT_Task,"55902",-,-,-,0,TK_NotStart,25/08/2022,,07/09/2022,,"SI20BBT7-15 FS","SI20BBT7-15","SI20BAT8-10 FS,SI20SGC6-15 FS,SI20SGC6J23 FS,SI20SGY7A20 FS,SI20BZK7A28 FS","SI20BAT8-10,SI20SGC6-15,SI20SGC6J23,SI20SGY7A20,SI20BZK7A28",107,,109,,25,,25,,79,584,"HK1003 -Blackpoint D2 - Rev.0E DD30092021"
1-3013,SI20EGx2-40,"ERECTION MANUALS ON SITE  FUEL OIL DAY TANK EGx",5121,"HK1003-Rev.0E-3",TT_Mile,"55902",-,-,-,0,TK_NotStart,12/07/2022,,12/07/2022,,"SI20EGx3-15 FS","SI20EGx3-15","SI20EGx6-65 FS,SI20EGx4-15 FS","SI20EGx6-65,SI20EGx4-15",101,,101,,23,,23,,73,520,"HK1003 -Blackpoint D2 - Rev.0E DD30092021"
1-3014,SI20EGx3-5,"DETAIL DESIGN / MANUFACTURING / SHOP TEST FUEL OIL DAY TANK EGx",5121,"HK1003-Rev.0E-3",TT_Task,"55902",-,-,-,0,TK_NotStart,13/10/2021,,16/05/2022,,"SI20XKA2-85 FS","SI20XKA2-85","SI20EGx3-10 FS","SI20EGx3-10",62,,93,,14,,21,,34,520,"HK1003 -Blackpoint D2 - Rev.0E DD30092021"
1-3015,SI20EGx2-30,"(DF) INPUT FOR MS3 FUEL OIL DAY TANK EGx",5121,"HK1003-Rev.0E-3",TT_FinMile,"55902",-,-,-,0,TK_NotStart,13/10/2021,,13/10/2021,,"SI20XKA2-85 FS","SI20XKA2-85","SI20UEX2-10 FS","SI20UEX2-10",62,,62,,14,,14,,34,1200,"HK1003 -Blackpoint D2 - Rev.0E DD30092021"
1-3016,SI20EGx4-15,"(OTD-OS) ON SITE FUEL OIL DAY TANK EGx",5121,"HK1003-Rev.0E-3",TT_FinMile,"55902",-,-,-,0,TK_NotStart,08/08/2022,,08/08/2022,,"SI20EGx4-10 FS,SI20EGx2-40 FS","SI20EGx4-10,SI20EGx2-40","SI20EGx6-65 FS,SI20XKA4-40 FS","SI20EGx6-65,SI20XKA4-40",105,,105,,24,,24,,77,520,"HK1003 -Blackpoint D2 - Rev.0E DD30092021"
1-3017,SI20EGx6-65,"ERECTION / PIPING FUEL OIL DAY TANK EGx",5121,"HK1003-Rev.0E-3",TT_Task,"55902",-,-,-,0,TK_NotStart,20/08/2022,,23/09/2022,,"SI20EGx2-40 FS,SI20EGx4-15 FS,SI20UEX2-100 FS,SI20XKA7-15 SS","SI20EGx2-40,SI20EGx4-15,SI20UEX2-100,SI20XKA7-15","SI20XKA8-10 FS,SI20SGY7A25 FS,SI20SGC6J26 FS,SI20TPM2C6-20 SS,SI20QJ-6B45 FS,SI20QJ-6B42 FS","SI20XKA8-10,SI20SGY7A25,SI20SGC6J26,SI20TPM2C6-20,SI20QJ-6B45,SI20QJ-6B42",107,,111,,24,,26,,78,840,"HK1003 -Blackpoint D2 - Rev.0E DD30092021"
1-3018,SI20EGx3-15,"(RFS) READY FOR SHIPMENT FUEL OIL DAY TANK EGx",5121,"HK1003-Rev.0E-3",TT_FinMile,"55902",-,-,-,0,TK_NotStart,13/06/2022,,13/06/2022,,"SI20EGx4-5 FS","SI20EGx4-5","SI20EGx2-40 FS,SI20EGx4-10 FS","SI20EGx2-40,SI20EGx4-10",97,,97,,22,,22,,69,520,"HK1003 -Blackpoint D2 - Rev.0E DD30092021"
1-3019,SI20EGx4-10,"TRANSPORT FUEL OIL DAY TANK EGx",5121,"HK1003-Rev.0E-3",TT_Task,"55902",-,-,-,0,TK_NotStart,14/06/2022,,08/08/2022,,"SI20EGx3-15 FS","SI20EGx3-15","SI20EGx4-15 FS","SI20EGx4-15",97,,105,,22,,24,,69,520,"HK1003 -Blackpoint D2 - Rev.0E DD30092021"
1-3020,SI20EGx4-5,"LOGISTICS AND CUSTOMS PREPARATION FUEL OIL DAY TANK EGx",5121,"HK1003-Rev.0E-3",TT_Task,"55902",-,-,-,0,TK_NotStart,17/05/2022,,13/06/2022,,"SI20EGx3-10 FS","SI20EGx3-10","SI20EGx3-15 FS","SI20EGx3-15",93,,97,,21,,22,,65,520,"HK1003 -Blackpoint D2 - Rev.0E DD30092021"
1-3021,SI20EGx3-10,"TIMES OF COMPLETION (FINAL DATA IN KANLOG) FUEL OIL DAY TANK EGx",5121,"HK1003-Rev.0E-3",TT_FinMile,"55902",-,-,-,0,TK_NotStart,16/05/2022,,16/05/2022,,"SI20EGx3-5 FS","SI20EGx3-5","SI20EGx4-5 FS","SI20EGx4-5",93,,93,,21,,21,,65,520,"HK1003 -Blackpoint D2 - Rev.0E DD30092021"
1-3022,SI20UBY5-56,"(RFE) FOUNDATION 20UBY05",5121,"HK1003-Rev.0E-3",TT_FinMile,"55902",-,-,-,0,TK_NotStart,17/04/2022,,17/04/2022,,"SI20UBY5-54 FS","SI20UBY5-54","SI20BZK7B01 FS,SI20BZP7-196 FS,SI20UVM6B5 FS","SI20BZK7B01,SI20BZP7-196,SI20UVM6B5",89,,89,,20,,20,,58,1440,"HK1003 -Blackpoint D2 - Rev.0E DD30092021"
1-3023,SI20UBY5-54,"CONSTRUCTION FOUNDATION 20UBY05",5121,"HK1003-Rev.0E-3",TT_Task,"55902",-,-,-,0,TK_NotStart,04/04/2022,,17/04/2022,,"SI20UBY5-55 SS","SI20UBY5-55","SI20UBY5-56 FS","SI20UBY5-56",87,,89,,20,,20,,56,1440,"HK1003 -Blackpoint D2 - Rev.0E DD30092021"
1-3024,SI20UBY5-53,"WORK PREPARATION, EXCAVATION 20UBY05",5121,"HK1003-Rev.0E-3",TT_Task,"55902",-,-,-,0,TK_NotStart,21/03/2022,,03/04/2022,,"SI20UBY2-64 FS,SI-----5-21& FS,SI-----5-20 FS,SI-P222-84 FS,SI20UBY2-74 FS","SI20UBY2-64,SI-----5-21&,SI-----5-20,SI-P222-84,SI20UBY2-74","SI20UBY5-55 FS,SI20UGU5-82 SS,SI-P222-131# FF,SI-P222-131# SS,SI20UBA5C-5 SS,SI20UBY4-53 SS","SI20UBY5-55,SI20UGU5-82,SI-P222-131#,SI-P222-131#,SI20UBA5C-5,SI20UBY4-53",85,,87,,19,,20,,53,336,"HK1003 -Blackpoint D2 - Rev.0E DD30092021"
1-3025,SI20UBY5-55,"(H) START PLACING FORMWORK 20UBY005",5121,"HK1003-Rev.0E-3",TT_Mile,"55902",-,-,-,0,TK_NotStart,04/04/2022,,04/04/2022,,"SI20UBY5-53 FS,SI20UBY2-75 FS","SI20UBY5-53,SI20UBY2-75","SI20UBY5-54 SS","SI20UBY5-54",87,,87,,20,,20,,56,1440,"HK1003 -Blackpoint D2 - Rev.0E DD30092021"
1-3026,SI20BZP7-5,"ERECTION CABLE TRAYS ON 20UBY04",5121,"HK1003-Rev.0E-3",TT_Task,"55902",-,-,-,0,TK_NotStart,24/08/2022,,20/09/2022,,"SI--BZP4B40 FS,SI20BZP7-26 FS,SI--PEE7-20 FS,SI20BZP7-191 FS,SI20UBY4-56 FS","SI--BZP4B40,SI20BZP7-26,SI--PEE7-20,SI20BZP7-191,SI20UBY4-56","SI20BZK7B27 FS,SI20BZP7B10# FF,SI20BZP7B10# SS,SI20BZK7B33 FS,SI20MAA7A15 FS,SI20MAG7A15 FS,SI20MAJ7A15 FS,SI20MAL7A15 FS,SI20MAN7H15 FS,SI20MAV7H15 FS,SI20MAW7H15 FS,SI20MAX7H15 FS,SI20MB-7H15 FS,SI20MB-7J15 FS,SI20MBQ7H15 FS,SI20LBA7H15 FS,SI20LBA7H16 FS,SI20LBA7J15 FS,SI20LBA7J16 FS,SI20LBB7J15 FS,SI20LBB7J17 FS,SI20LBG7A17 FS,SI20LBG7A15 FS,SI20LAB7H15 FS,SI20LCA7A15 FS,SI20LCL7A15 FS,SI20LCW7H15 FS,SI20LDK7H16 FS,SI20EK-7H15 FS,SI20EK-7I15 FS,SI20PAB7A15 FS,SI20PAH7H15 FS,SI20PAR7A16 FS,SI20PCB7H15 FS,SI20PGB7H15 FS,SI20GHC7H15 FS,SI20GHC7H17 FS,SI20GHD7H15 FS,SI20QFB7H15 FS,SI20QU-7H15 FS,SI20BZK7B01 FS,SI20BZK7B48 FS,SI20BZP7-192 FS","SI20BZK7B27,SI20BZP7B10#,SI20BZP7B10#,SI20BZK7B33,SI20MAA7A15,SI20MAG7A15,SI20MAJ7A15,SI20MAL7A15,SI20MAN7H15,SI20MAV7H15,SI20MAW7H15,SI20MAX7H15,SI20MB-7H15,SI20MB-7J15,SI20MBQ7H15,SI20LBA7H15,SI20LBA7H16,SI20LBA7J15,SI20LBA7J16,SI20LBB7J15,SI20LBB7J17,SI20LBG7A17,SI20LBG7A15,SI20LAB7H15,SI20LCA7A15,SI20LCL7A15,SI20LCW7H15,SI20LDK7H16,SI20EK-7H15,SI20EK-7I15,SI20PAB7A15,SI20PAH7H15,SI20PAR7A16,SI20PCB7H15,SI20PGB7H15,SI20GHC7H15,SI20GHC7H17,SI20GHD7H15,SI20QFB7H15,SI20QU-7H15,SI20BZK7B01,SI20BZK7B48,SI20BZP7-192",107,,111,,25,,26,,78,144,"HK1003 -Blackpoint D2 - Rev.0E DD30092021"
1-3027,SI20UBY5-60,"(RFE) FOUNDATION 20UBY03",5121,"HK1003-Rev.0E-3",TT_FinMile,"55902",-,-,-,0,TK_NotStart,15/06/2022,,15/06/2022,,"SI20UBY5-58 FS","SI20UBY5-58","SI20UBA5B46 FS,SI20BZP7-85 FS,SI20BZP7-35 FS","SI20UBA5B46,SI20BZP7-85,SI20BZP7-35",97,,97,,22,,22,,69,1264,"HK1003 -Blackpoint D2 - Rev.0E DD30092021"
1-3028,SI20UBY5-58,"CONSTRUCTION FOUNDATION 20UBY03",5121,"HK1003-Rev.0E-3",TT_Task,"55902",-,-,-,0,TK_NotStart,19/05/2022,,15/06/2022,,"SI20UBY5-59 SS","SI20UBY5-59","SI20UBY5-60 FS","SI20UBY5-60",93,,97,,21,,22,,65,1264,"HK1003 -Blackpoint D2 - Rev.0E DD30092021"
1-3029,SI20UBY5-57,"WORK PREPARATION, EXCAVATION 20UBY03",5121,"HK1003-Rev.0E-3",TT_Task,"55902",-,-,-,0,TK_NotStart,05/05/2022,,18/05/2022,,"SI20UBY2-56 FS,SI20UBZ5-72 FS,SI20UEY5-45 FS,SI-----5-21& FS,SI-----5-20 FS,SI-P222-84 FS,SI20UBY2-72 FS","SI20UBY2-56,SI20UBZ5-72,SI20UEY5-45,SI-----5-21&,SI-----5-20,SI-P222-84,SI20UBY2-72","SI20UBY5-59 FS,SI-P222-131# FF,SI-P222-131# SS","SI20UBY5-59,SI-P222-131#,SI-P222-131#",91,,93,,21,,21,,63,1264,"HK1003 -Blackpoint D2 - Rev.0E DD30092021"
1-3030,SI20UBY5-59,"(H) START PLACING FORMWORK 20UBY03",5121,"HK1003-Rev.0E-3",TT_Mile,"55902",-,-,-,0,TK_NotStart,19/05/2022,,19/05/2022,,"SI20UBY5-57 FS,SI20UBY2-73 FS","SI20UBY5-57,SI20UBY2-73","SI20UBY5-58 SS","SI20UBY5-58",93,,93,,21,,21,,65,1264,"HK1003 -Blackpoint D2 - Rev.0E DD30092021"
1-3031,SI20BTA3A26,"PLACEMENT OF BATTERIES INTO RACKS BATTERIES BTA",5121,"HK1003-Rev.0E-3",TT_Task,"55902",-,-,-,0,TK_NotStart,14/12/2022,,20/12/2022,,"SI20BTA3-25 FS,SI20BTA3A25 FS,SI20UBA4G59 FS,SI20UBA7-17 FS,SI20BZK7A28 FS","SI20BTA3-25,SI20BTA3A25,SI20UBA4G59,SI20UBA7-17,SI20BZK7A28","SI20UBA8-12 FS","SI20UBA8-12",123,,124,,28,,29,,87,200,"HK1003 -Blackpoint D2 - Rev.0E DD30092021"
1-3032,SI20UBA4B41,"LOGISTICS AND CUSTOMS PREPARATION ELECTRICAL MODULES 20UBA7410  (TO SITE)",5121,"HK1003-Rev.0E-3",TT_Task,"55902",-,-,-,0,TK_NotStart,31/03/2022,,27/04/2022,,"SI20UBA3B74 FS","SI20UBA3B74","SI20UBA3G83 FS,SI20UBA3G20#1 FF","SI20UBA3G83,SI20UBA3G20#1",86,,90,,20,,21,,54,688,"HK1003 -Blackpoint D2 - Rev.0E DD30092021"
1-3033,SI20UBA3B74,"TIMES OF COMPLETION (FINAL DATA IN KANLOG) ELECTRICAL MODULES 20UBA7410",5121,"HK1003-Rev.0E-3",TT_FinMile,"55902",-,-,-,0,TK_NotStart,31/03/2022,,31/03/2022,,"SI20UBA3G82 FS","SI20UBA3G82","SI20UBA4B41 FS","SI20UBA4B41",86,,86,,20,,20,,54,688,"HK1003 -Blackpoint D2 - Rev.0E DD30092021"
1-3034,SI20UBA4-64,"(ET4b) ELECTRICAL MODULES AT WORKSHOP READY FOR COMPONENT INSTALLATION 20UBA7410",5121,"HK1003-Rev.0E-3",TT_Mile,"55902",-,-,-,0,TK_NotStart,19/01/2022,,19/01/2022,,"SI20UBA3G81 FS,SI20BFA4-10 FS","SI20UBA3G81,SI20BFA4-10","SI20UBA3G82 FS","SI20UBA3G82",76,,76,,17,,17,,46,688,"HK1003 -Blackpoint D2 - Rev.0E DD30092021"
1-3035,SI20UBA2G61,"(DF) INPUT FOR MS3 ELECTRICAL MODULES 20UBA7410",5121,"HK1003-Rev.0E-3",TT_FinMile,"55902",-,-,-,100,TK_Complete,23/06/2021,23/06/2021,23/06/2021,23/06/2021,"SI-----1-01 FS,SI--UBA2K60 FS","SI-----1-01,SI--UBA2K60","SI--UBA2E60 FS,SI--UBA2-60 FS,SI20UBA2B-5 FS","SI--UBA2E60,SI--UBA2-60,SI20UBA2B-5",46,46,46,46,10,10,10,10,18,,"HK1003 -Blackpoint D2 - Rev.0E DD30092021"
1-3036,SI20UBA4G52,"TRANSPORT ELECTRICAL MODULES 20UBA7410  (TO SITE)",5121,"HK1003-Rev.0E-3",TT_Task,"55902",-,-,-,0,TK_NotStart,28/04/2022,,22/06/2022,,"SI20UBA3G83 FS","SI20UBA3G83","SI20UBA4-42 FS","SI20UBA4-42",90,,98,,21,,23,,59,688,"HK1003 -Blackpoint D2 - Rev.0E DD30092021"
1-3037,SI20UBA3G82,"INSTALL. COMP., INT. CABLING, FIRE PROT., SHOP TEST ELECTRICAL MODULES 20UBA7410",5121,"HK1003-Rev.0E-3",TT_Task,"55902",-,-,-,0,TK_NotStart,19/01/2022,,06/04/2022,,"SI20UBA2G76 FS,SI20UBA4-64 FS,SP--B--2-13 FS","SI20UBA2G76,SI20UBA4-64,SP--B--2-13","SI20UBA3B74 FS","SI20UBA3B74",76,,87,,17,,20,,46,688,"HK1003 -Blackpoint D2 - Rev.0E DD30092021"
1-3038,SI20UBA3G83,"(RFS) READY FOR SHIPMENT TO SITE ELECTRICAL MODULES 20UBA7410  (TO SITE)",5121,"HK1003-Rev.0E-3",TT_FinMile,"55902",-,-,-,0,TK_NotStart,27/04/2022,,27/04/2022,,"SI20UBA4B41 FS","SI20UBA4B41","SI20UBA4G52 FS","SI20UBA4G52",90,,90,,21,,21,,59,688,"HK1003 -Blackpoint D2 - Rev.0E DD30092021"
1-3039,SI20UBA3G81,"MANUFACTURING ELECTRICAL MODULES 20UBA7410",5121,"HK1003-Rev.0E-3",TT_Task,"55902",-,-,-,28,TK_Active,18/08/2021,18/08/2021,18/01/2022,,"SI--UBA2G85 SS,SI--2222-30 FS","SI--UBA2G85,SI--2222-30","SI20UBA4-64 FS,SI20UBA3G20#1 SS","SI20UBA4-64,SI20UBA3G20#1",54,54,76,,12,12,17,,26,688,"HK1003 -Blackpoint D2 - Rev.0E DD30092021"
1-3040,SI20UBA2G76,"E-AND I&C- MANUALS FOR COMP.INSTALL.AVAILABLE ELECTRICAL MODULES 20UBA7410",5121,"HK1003-Rev.0E-3",TT_Mile,"55902",-,-,-,0,TK_NotStart,22/12/2021,,22/12/2021,,"SI--UBA2G85 FS","SI--UBA2G85","SI20UBA3G82 FS","SI20UBA3G82",72,,72,,16,,16,,43,688,"HK1003 -Blackpoint D2 - Rev.0E DD30092021"
1-3041,SI20UBA4B42,"LOGISTICS AND CUSTOMS PREPARATION ELECTRICAL MODULES 20UBA7710/20  (TO SITE)",5121,"HK1003-Rev.0E-3",TT_Task,"55902",-,-,-,0,TK_NotStart,31/03/2022,,27/04/2022,,"SI20UBA3B75 FS","SI20UBA3B75","SI20UBA3G86 FS,SI20UBA3G20#2 FF","SI20UBA3G86,SI20UBA3G20#2",86,,90,,20,,21,,54,688,"HK1003 -Blackpoint D2 - Rev.0E DD30092021"
1-3042,SI20UBA3B75,"TIMES OF COMPLETION (FINAL DATA IN KANLOG) ELECTRICAL MODULES 20UBA7710/20",5121,"HK1003-Rev.0E-3",TT_FinMile,"55902",-,-,-,0,TK_NotStart,31/03/2022,,31/03/2022,,"SI20UBA3G85 FS","SI20UBA3G85","SI20UBA4B42 FS","SI20UBA4B42",86,,86,,20,,20,,54,688,"HK1003 -Blackpoint D2 - Rev.0E DD30092021"
1-3043,SI20UBA4-65,"(ET4b) ELECTRICAL MODULES AT WORKSHOP READY FOR COMPONENT INSTALLATION 20UBA7710/20",5121,"HK1003-Rev.0E-3",TT_Mile,"55902",-,-,-,0,TK_NotStart,19/01/2022,,19/01/2022,,"SI20UBA3G84 FS,SI20BTL4-10 FS,SI20BRU4-10 FS,SI20BTA4B10 FS,SI20BTL4-11 FS","SI20UBA3G84,SI20BTL4-10,SI20BRU4-10,SI20BTA4B10,SI20BTL4-11","SI20UBA3G85 FS","SI20UBA3G85",76,,76,,17,,17,,46,688,"HK1003 -Blackpoint D2 - Rev.0E DD30092021"
1-3044,SI20UBA2G62,"(DF) INPUT FOR MS3 ELECTRICAL MODULES 20UBA7710/20",5121,"HK1003-Rev.0E-3",TT_FinMile,"55902",-,-,-,100,TK_Complete,23/06/2021,23/06/2021,23/06/2021,23/06/2021,"SI-----1-01 FS,SI--UBA2K60 FS","SI-----1-01,SI--UBA2K60","SI--UBA2E60 FS,SI--UBA2-60 FS,SI20UBA2B-5 FS","SI--UBA2E60,SI--UBA2-60,SI20UBA2B-5",46,46,46,46,10,10,10,10,18,,"HK1003 -Blackpoint D2 - Rev.0E DD30092021"
1-3045,SI20UBA4G54,"TRANSPORT ELECTRICAL MODULES 20UBA7710/20  (TO SITE)",5121,"HK1003-Rev.0E-3",TT_Task,"55902",-,-,-,0,TK_NotStart,28/04/2022,,22/06/2022,,"SI20UBA3G86 FS","SI20UBA3G86","SI20UBA4-42 FS,SI20UBA4-42 FF,SI20UBA4G59 FF","SI20UBA4-42,SI20UBA4-42,SI20UBA4G59",90,,98,,21,,23,,59,688,"HK1003 -Blackpoint D2 - Rev.0E DD30092021"
1-3046,SI20UBA3G85,"INSTALL. COMP., INT. CABLING, FIRE PROT., SHOP TEST ELECTRICAL MODULES 20UBA7710/20",5121,"HK1003-Rev.0E-3",TT_Task,"55902",-,-,-,0,TK_NotStart,19/01/2022,,06/04/2022,,"SI20UBA2G77 FS,SI20UBA4-65 FS,SP--B--2-13 FS","SI20UBA2G77,SI20UBA4-65,SP--B--2-13","SI20UBA3B75 FS","SI20UBA3B75",76,,87,,17,,20,,46,688,"HK1003 -Blackpoint D2 - Rev.0E DD30092021"
1-3047,SI20UBA3G86,"(RFS) READY FOR SHIPMENT TO SITE ELECTRICAL MODULES 20UBA7710/20  (TO SITE)",5121,"HK1003-Rev.0E-3",TT_FinMile,"55902",-,-,-,0,TK_NotStart,27/04/2022,,27/04/2022,,"SI20UBA4B42 FS","SI20UBA4B42","SI20UBA4G54 FS","SI20UBA4G54",90,,90,,21,,21,,59,688,"HK1003 -Blackpoint D2 - Rev.0E DD30092021"
1-3048,SI20UBA3G84,"MANUFACTURING ELECTRICAL MODULES 20UBA7710/20",5121,"HK1003-Rev.0E-3",TT_Task,"55902",-,-,-,28,TK_Active,18/08/2021,18/08/2021,18/01/2022,,"SI--UBA2G85 SS,SI--2222-30 FS","SI--UBA2G85,SI--2222-30","SI20UBA4-65 FS,SI20UBA3G20#2 SS","SI20UBA4-65,SI20UBA3G20#2",54,54,76,,12,12,17,,26,688,"HK1003 -Blackpoint D2 - Rev.0E DD30092021"
1-3049,SI20UBA2G77,"E-AND I&C- MANUALS FOR COMP.INSTALL.AVAILABLE ELECTRICAL MODULES 20UBA7710/20",5121,"HK1003-Rev.0E-3",TT_Mile,"55902",-,-,-,0,TK_NotStart,22/12/2021,,22/12/2021,,"SI--UBA2G85 FS","SI--UBA2G85","SI20UBA3G85 FS","SI20UBA3G85",72,,72,,16,,16,,43,688,"HK1003 -Blackpoint D2 - Rev.0E DD30092021"
1-3050,SI--SMM2-87,"(DF) INPUT FOR VEL CRANES 20SMM01/02 FOR 20UMC",5121,"HK1003-Rev.0E-3",TT_FinMile,"55902",-,-,-,100,TK_Complete,26/04/2021,26/04/2021,26/04/2021,26/04/2021,"SI--SMM2-85 FS","SI--SMM2-85","SI--B--2A55 FS,SP--B--2-61 FS","SI--B--2A55,SP--B--2-61",38,38,38,38,8,8,8,8,10,,"HK1003 -Blackpoint D2 - Rev.0E DD30092021"
1-3051,SI20SMG2-87,"BASIC DESIGN MECHANICAL / ELECTRICAL OTHER CRANES AND HOISTS",5121,"HK1003-Rev.0E-3",TT_Task,"55902",-,-,-,100,TK_Complete,15/04/2021,15/04/2021,09/06/2021,09/06/2021,"SI-----1-05 FS","SI-----1-05","SI20SMG2-75 FS,SI20SMG2-86 FS","SI20SMG2-75,SI20SMG2-86",36,36,44,44,8,8,10,10,8,,"HK1003 -Blackpoint D2 - Rev.0E DD30092021"
1-3052,SI20LBA6J73,"PT, RE-INSTALLATION PIPES / VALVES 20LBA80 (BOP)",5121,"HK1003-Rev.0E-3",TT_Task,"55902",-,-,-,0,TK_NotStart,31/12/2022,,12/01/2023,,"SI20LBA6J15 FS,SI20MA-6A50 FS","SI20LBA6J15,SI20MA-6A50","SI20UMY6M70 FF,SI20LBG8A10 FS,SI20LBB8J11 FS,SI20LBA8H10 FS,SI20LBA8J10 FS","SI20UMY6M70,SI20LBG8A10,SI20LBB8J11,SI20LBA8H10,SI20LBA8J10",126,,127,,29,,29,,88,736,"HK1003 -Blackpoint D2 - Rev.0E DD30092021"
1-3053,SI20LBA6H71,"PT, RE-INSTALLATION PIPES / VALVES 11LBA10 (TURBOSET)",5121,"HK1003-Rev.0E-3",TT_Task,"55902",-,-,-,0,TK_NotStart,04/02/2023,,16/02/2023,,"SI11LBA6H71 FS","SI11LBA6H71","SI11LBA6H46 FS","SI11LBA6H46",131,,132,,30,,30,,89,256,"HK1003 -Blackpoint D2 - Rev.0E DD30092021"
1-3054,SI20MA-6A61,"(RFS) READY FOR SHIPMENT TO FABRICATOR ST VALVE FOR MAL00Y, MAW10Y, MAW50Y",5121,"HK1003-Rev.0E-3",TT_FinMile,"55902",-,-,-,0,TK_NotStart,21/12/2021,,21/12/2021,,"SP20MA-3-25 SS,SP20MA-3-84 FS,SP20MA-3-84 FF","SP20MA-3-25,SP20MA-3-84,SP20MA-3-84","SI20MA-4-41 FS","SI20MA-4-41",72,,72,,16,,16,,43,336,"HK1003 -Blackpoint D2 - Rev.0E DD30092021"
1-3055,SI20MA-4-42,"(OTD-OS) ARRIVAL AT FABRICATOR ST VALVES",5121,"HK1003-Rev.0E-3",TT_FinMile,"55902",-,-,-,0,TK_NotStart,31/12/2021,,31/12/2021,,"SI20MA-4-41 FS","SI20MA-4-41","SI20---3B93 FS","SI20---3B93",73,,73,,17,,17,,43,336,"HK1003 -Blackpoint D2 - Rev.0E DD30092021"
1-3056,SI20MA-4-41,"TRANSPORT ST VALVES TO FABRICATOR",5121,"HK1003-Rev.0E-3",TT_Task,"55902",-,-,-,0,TK_NotStart,22/12/2021,,31/12/2021,,"SI20MA-6A61 FS","SI20MA-6A61","SI20MA-4-42 FS","SI20MA-4-42",72,,73,,16,,17,,43,336,"HK1003 -Blackpoint D2 - Rev.0E DD30092021"
1-3057,SP20MA2B42,"(M1) P&IDs FOR ST / GENERATOR & AUXILIARIES AVAILABLE",5121,"HK1003-Rev.0E-3",TT_Mile,"55902",-,-,-,100,TK_Complete,15/01/2021,15/01/2021,15/01/2021,15/01/2021,"SI-----1-05 FS,SP20MA-3-82 FS","SI-----1-05,SP20MA-3-82","SI---1P2A10 FS,SI---3P2A10 FS,SI---2P2A10 FS,SI---5P2A10 FS,SI---4P2A10 FS","SI---1P2A10,SI---3P2A10,SI---2P2A10,SI---5P2A10,SI---4P2A10",23,23,23,23,5,5,5,5,2,,"HK1003 -Blackpoint D2 - Rev.0E DD30092021"
1-3058,SP20MA2B43,"(M2) P&IDs FOR ST / GENERATOR & AUXILIARIES AVAILABLE",5121,"HK1003-Rev.0E-3",TT_Mile,"55902",-,-,-,100,TK_Complete,02/02/2021,02/02/2021,02/02/2021,02/02/2021,"SP20MA-2-81 FS,SP20MA-3-82 FS","SP20MA-2-81,SP20MA-3-82","SI---1P2A10 FS,SI---2P2A10 FS,SI---3P2A10 FS,SI---4P2A10 FS,SI---5P2A10 FS","SI---1P2A10,SI---2P2A10,SI---3P2A10,SI---4P2A10,SI---5P2A10",26,26,26,26,6,6,6,6,4,,"HK1003 -Blackpoint D2 - Rev.0E DD30092021"
1-3059,SI20PUR3J25,"DETAIL DESIGN / MANUFACTURING CATHODIC PROTECTION 20PUR",5121,"HK1003-Rev.0E-3",TT_Task,"55902",-,-,-,0,TK_NotStart,20/10/2021,,16/07/2022,,"SI20PUR2J85 FS,SI--PAD2-90 FS,SI--PAD2-91 FS","SI20PUR2J85,SI--PAD2-90,SI--PAD2-91","SI20PUR3B70 FS,SI20PUR3J80 FS","SI20PUR3B70,SI20PUR3J80",63,,102,,14,,23,,35,656,"HK1003 -Blackpoint D2 - Rev.0E DD30092021"
1-3060,SI20PUR3J80,"(RFS) READY FOR SHIPMENT CATHODIC PROTECTION 20PUR",5121,"HK1003-Rev.0E-3",TT_FinMile,"55902",-,-,-,0,TK_NotStart,13/08/2022,,13/08/2022,,"SI20PUR4B10 FS,SI20PUR3J25 FS","SI20PUR4B10,SI20PUR3J25","SI20PUR4J25 FS","SI20PUR4J25",106,,106,,24,,24,,77,656,"HK1003 -Blackpoint D2 - Rev.0E DD30092021"
1-3061,SI20PUR4J40,"(OTD-OS) ON SITE CATHODIC PROTECTION 20PUR",5121,"HK1003-Rev.0E-3",TT_FinMile,"55902",-,-,-,0,TK_NotStart,08/10/2022,,08/10/2022,,"SI20PUR4J25 FS","SI20PUR4J25","SI20PUR7J15 FS,SI20PUR7J17 FS","SI20PUR7J15,SI20PUR7J17",114,,114,,26,,26,,83,656,"HK1003 -Blackpoint D2 - Rev.0E DD30092021"
1-3062,SI20PUR2J85,"CONTRACT INTO FORCE CATHODIC PROTECTION 20PUR",5121,"HK1003-Rev.0E-3",TT_Mile,"55902",-,-,-,100,TK_Complete,24/05/2021,24/05/2021,24/05/2021,24/05/2021,"SI20PUR2J80 FS","SI20PUR2J80","SI20PUR3J25 FS,SI--PAD2-88 FS","SI20PUR3J25,SI--PAD2-88",42,42,42,42,9,9,9,9,13,,"HK1003 -Blackpoint D2 - Rev.0E DD30092021"
1-3063,SI20PUR2J80,"QUOTATION STAGE CATHODIC PROTECTION 20PUR",5121,"HK1003-Rev.0E-3",TT_Task,"55902",-,-,-,100,TK_Complete,23/04/2021,23/04/2021,23/05/2021,23/05/2021,"SI20PUR2J75 FS,SI--3332-17 FS","SI20PUR2J75,SI--3332-17","SI20PUR2J85 FS","SI20PUR2J85",37,37,42,42,8,8,9,9,10,,"HK1003 -Blackpoint D2 - Rev.0E DD30092021"
1-3064,SI20PUR8-25,"(TOP-20PUR-03) CATHODIC PROTECTION SYSTEM FOR COOLING TOWER STRUCTURE",5121,"HK1003-Rev.0E-3",TT_FinMile,"55902",-,-,-,0,TK_NotStart,17/09/2022,,17/09/2022,,"SI20URA5E45 FS","SI20URA5E45","SI20MB-9A15& FS,SI20B--8-50 FS,SI20PAD8-57 FS","SI20MB-9A15&,SI20B--8-50,SI20PAD8-57",111,,111,,25,,25,,81,1208,"HK1003 -Blackpoint D2 - Rev.0E DD30092021"
1-3065,SI20PUR2J75,"PREPARATION RFQ CATHODIC PROTECTION 20PUR",5121,"HK1003-Rev.0E-3",TT_Task,"55902",-,-,-,100,TK_Complete,12/02/2021,12/02/2021,22/04/2021,22/04/2021,"SI-----1-05 FS","SI-----1-05","SI20PUR2J80 FS","SI20PUR2J80",27,27,37,37,6,6,8,8,4,,"HK1003 -Blackpoint D2 - Rev.0E DD30092021"
1-3066,SI20PUR4J25,"TRANSPORT CATHODIC PROTECTION 20PUR",5121,"HK1003-Rev.0E-3",TT_Task,"55902",-,-,-,0,TK_NotStart,14/08/2022,,08/10/2022,,"SI20PUR3J80 FS","SI20PUR3J80","SI20PUR4J40 FS","SI20PUR4J40",106,,114,,24,,26,,77,656,"HK1003 -Blackpoint D2 - Rev.0E DD30092021"
1-3067,SI20PUR7J15,"ELECTRICAL ERECTION CATHODIC PROTECTION CONDENSER",5121,"HK1003-Rev.0E-3",TT_Task,"55902",-,-,-,0,TK_NotStart,23/10/2022,,20/01/2023,,"SI20PUR4J40 FS","SI20PUR4J40","SI20BZK7D11# FF,SI20BZK7D11# SS,SI20PUR8-27 FS","SI20BZK7D11#,SI20BZK7D11#,SI20PUR8-27",116,,128,,27,,30,,84,656,"HK1003 -Blackpoint D2 - Rev.0E DD30092021"
1-3068,SI20PUR4B10,"LOGISTICS AND CUSTOMS PREPARATION CATHODIC PROTECTION 20PUR",5121,"HK1003-Rev.0E-3",TT_Task,"55902",-,-,-,0,TK_NotStart,17/07/2022,,13/08/2022,,"SI20PUR3B70 FS","SI20PUR3B70","SI20PUR3J80 FS","SI20PUR3J80",102,,106,,23,,24,,74,656,"HK1003 -Blackpoint D2 - Rev.0E DD30092021"
1-3069,SI20PUR3B70,"TIMES OF COMPLETION (FINAL DATA IN KANLOG) CATHODIC PROTECTION 20PUR",5121,"HK1003-Rev.0E-3",TT_FinMile,"55902",-,-,-,0,TK_NotStart,16/07/2022,,16/07/2022,,"SI20PUR3J25 FS","SI20PUR3J25","SI20PUR4B10 FS","SI20PUR4B10",102,,102,,23,,23,,74,656,"HK1003 -Blackpoint D2 - Rev.0E DD30092021"
1-3070,SI--PAD2-89,"(DF) INPUT FOR MS3 CATHODIC PROTECTION 20PUR (MPA)",5121,"HK1003-Rev.0E-3",TT_Mile,"55902",-,-,-,100,TK_Complete,13/05/2021,13/05/2021,13/05/2021,13/05/2021,"SI-----1-05 FS","SI-----1-05","SI--URD2-60 FS","SI--URD2-60",40,40,40,40,9,9,9,9,12,,"HK1003 -Blackpoint D2 - Rev.0E DD30092021"
1-3071,SI--PAD2-88,"(DF) INPUT FOR VEL CATHODIC PROTECTION 20PUR",5121,"HK1003-Rev.0E-3",TT_Mile,"55902",-,-,-,100,TK_Complete,18/06/2021,18/06/2021,18/06/2021,18/06/2021,"SI20PUR2J85 FS","SI20PUR2J85","SP--B--2-61 FS","SP--B--2-61",45,45,45,45,10,10,10,10,18,,"HK1003 -Blackpoint D2 - Rev.0E DD30092021"
1-3072,SI--PAD2-91,"ENGINEERING INPUT FROM COARSE SCREEN / PAC PUMPS AVAILABLE (DETAILED LAYOUT)",5121,"HK1003-Rev.0E-3",TT_Mile,"55902",-,-,-,0,TK_NotStart,20/10/2021,,20/10/2021,,"SI20PAA2-85 FS,SI--PAC2B85 FS","SI20PAA2-85,SI--PAC2B85","SI20PUR3J25 FS","SI20PUR3J25",63,,63,,14,,14,,35,656,"HK1003 -Blackpoint D2 - Rev.0E DD30092021"
1-3073,SI--PAD2-90,"ENGINEERING INPUT FROM CONDENSER AVAILABLE (DETAILED LAYOUT)",5121,"HK1003-Rev.0E-3",TT_Mile,"55902",-,-,-,100,TK_Complete,16/04/2021,16/04/2021,16/04/2021,16/04/2021,"SP20MA-3-83 FS,SP20MA-2-82 FS","SP20MA-3-83,SP20MA-2-82","SI20PUR3J25 FS","SI20PUR3J25",36,36,36,36,8,8,8,8,9,,"HK1003 -Blackpoint D2 - Rev.0E DD30092021"
1-3074,SP20MA-2-82,"CONTRACT INTO FORCE ST CONDENSER 20MAG",5121,"HK1003-Rev.0E-3",TT_Mile,"55902",-,-,-,100,TK_Complete,26/03/2021,26/03/2021,26/03/2021,26/03/2021,"SP20MA-3-83 FS","SP20MA-3-83","SP20MAG3-25 FS,SI--PAD2-90 FS","SP20MAG3-25,SI--PAD2-90",33,33,33,33,7,7,7,7,7,,"HK1003 -Blackpoint D2 - Rev.0E DD30092021"
1-3075,SI20UTG2-42,"BASIC BUILDING DESIGN INCL. 3D MODEL 20UTG07",5121,"HK1003-Rev.0E-3",TT_Task,"55902",-,-,-,100,TK_Complete,29/06/2021,29/06/2021,26/07/2021,26/07/2021,"SI20UTG2-41 FS,SI20UMC2B20 SS","SI20UTG2-41,SI20UMC2B20","SI20UTG2-43 FS","SI20UTG2-43",47,47,51,51,11,11,11,11,19,,"HK1003 -Blackpoint D2 - Rev.0E DD30092021"
1-3076,SI20UTG2-44,"PREPARATION FOUNDATION GROUNDING DWGS UTG 20UTG07",5121,"HK1003-Rev.0E-3",TT_Task,"55902",-,-,-,100,TK_Complete,27/08/2021,27/08/2021,09/09/2021,09/09/2021,"SI20UTG2-43 FF,SI20UTG2-41 FS","SI20UTG2-43,SI20UTG2-41","SI20UTG2-48 FS,SI20UTG2-45 FS","SI20UTG2-48,SI20UTG2-45",55,55,57,57,13,13,13,13,27,,"HK1003 -Blackpoint D2 - Rev.0E DD30092021"
1-3077,SI20UTG2-43,"DETAIL DESIGN CONCRETE STRUCTURE 20UTG07",5121,"HK1003-Rev.0E-3",TT_Task,"55902",-,-,-,100,TK_Complete,27/07/2021,27/07/2021,09/09/2021,09/09/2021,"SI20UTG2-42 FS,SI20UTG2-41 FS","SI20UTG2-42,SI20UTG2-41","SI20UTG2-44 FF,SI20UTG2-48 FS,SI20UTG2-45 FS,SI20UTG2S-4 FS","SI20UTG2-44,SI20UTG2-48,SI20UTG2-45,SI20UTG2S-4",51,51,57,57,12,12,13,13,23,,"HK1003 -Blackpoint D2 - Rev.0E DD30092021"
1-3078,SI20UTG2-48,"(F) CONCRETE STRUCTURE DWGS ON SITE RELEASED FOR EXECUTION 20UTG07",5121,"HK1003-Rev.0E-3",TT_FinMile,"55902",-,-,-,0,TK_NotStart,10/04/2022,,10/04/2022,,"SI20UTG2-43 FS,SI20UTG2-44 FS,SI20UTG2-47 FS","SI20UTG2-43,SI20UTG2-44,SI20UTG2-47","SI20UTG5-70.00 FS","SI20UTG5-70.00",88,,88,,20,,20,,57,2120,"HK1003 -Blackpoint D2 - Rev.0E DD30092021"
1-3079,SI20UTG2-41,"(MS3) CONCRETE STRUCTURE FINAL DIMENSIONS, LOADS AVAILABLE 20UTG07",5121,"HK1003-Rev.0E-3",TT_FinMile,"55902",-,-,-,100,TK_Complete,28/06/2021,28/06/2021,28/06/2021,28/06/2021,"SI--PM-2-30 FS","SI--PM-2-30","SI20UTG2-42 FS,SI20UTG2-44 FS,SI20UTG2-43 FS,SI20UTG2S-4 FS","SI20UTG2-42,SI20UTG2-44,SI20UTG2-43,SI20UTG2S-4",47,47,47,47,11,11,11,11,19,,"HK1003 -Blackpoint D2 - Rev.0E DD30092021"
1-3080,SI20UTG2-45,"CLIENT - REVIEW - DETAIL DESIGN CONCRETE 20UTG07",5121,"HK1003-Rev.0E-3",TT_Task,"55902",-,-,-,80,TK_Active,10/09/2021,10/09/2021,04/10/2021,,"SI20UTG2-43 FS,SI20UTG2-44 FS","SI20UTG2-43,SI20UTG2-44","SI20UTG2-46 SS","SI20UTG2-46",57,57,61,,13,13,14,,29,2104,"HK1003 -Blackpoint D2 - Rev.0E DD30092021"
1-3081,SI20UTG2-46,"BD - SUBMISSION & APPROVAL - DETAIL DESIGN CONCRETE 20UTG07",5121,"HK1003-Rev.0E-3",TT_Task,"55902",-,-,-,0,TK_NotStart,10/10/2021,,08/12/2021,,"SI20UTG2-45 SS,SI-P221-40& FS,SI--UBA2-96 SS,SI-P222-77 FS","SI20UTG2-45,SI-P221-40&,SI--UBA2-96,SI-P222-77","SI20UTG2-47 FS,SI20UTG2S-12 FS,SI20UTG2-91 FS","SI20UTG2-47,SI20UTG2S-12,SI20UTG2-91",62,,70,,14,,16,,32,2024,"HK1003 -Blackpoint D2 - Rev.0E DD30092021"
1-3082,SI20UTG2-47,"BD - CONSENT LETTER - DETAIL DESIGN CONCRETE 20UTG07",5121,"HK1003-Rev.0E-3",TT_Task,"55902",-,-,-,0,TK_NotStart,09/12/2021,,05/01/2022,,"SI20UTG2-46 FS","SI20UTG2-46","SI20UTG2-48 FS,SI20UTG2-92 FS","SI20UTG2-48,SI20UTG2-92",70,,74,,16,,17,,41,2872,"HK1003 -Blackpoint D2 - Rev.0E DD30092021"
1-3083,SI20UTG2-50,"BASIC BUILDING DESIGN INCL. 3D MODEL 20UTG04",5121,"HK1003-Rev.0E-3",TT_Task,"55902",-,-,-,100,TK_Complete,16/08/2021,16/08/2021,05/09/2021,05/09/2021,"SI20UTG2-49 FS,SI20UTG2-10 SS","SI20UTG2-49,SI20UTG2-10","SI20UTG2-51 FS","SI20UTG2-51",54,54,57,57,12,12,13,13,26,,"HK1003 -Blackpoint D2 - Rev.0E DD30092021"
1-3084,SI20UTG2-52,"PREPARATION FOUNDATION GROUNDING DWGS UTG 20UTG04",5121,"HK1003-Rev.0E-3",TT_Task,"55902",-,-,-,0,TK_NotStart,07/10/2021,,20/10/2021,,"SI20UTG2-51 FF,SI20UTG2-49 FS","SI20UTG2-51,SI20UTG2-49","SI20UTG2-56 FS,SI20UTG2-53 FS,SI20UTG2-53 FF","SI20UTG2-56,SI20UTG2-53,SI20UTG2-53",61,,63,,14,,14,,32,2288,"HK1003 -Blackpoint D2 - Rev.0E DD30092021"
1-3085,SI20UTG2-51,"DETAIL DESIGN CONCRETE STRUCTURE 20UTG04",5121,"HK1003-Rev.0E-3",TT_Task,"55902",-,-,-,53,TK_Active,06/09/2021,06/09/2021,20/10/2021,,"SI20UTG2-50 FS,SI20UTG2-49 FS","SI20UTG2-50,SI20UTG2-49","SI20UTG2-52 FF,SI20UTG2-56 FS,SI20UTG2-53 FS","SI20UTG2-52,SI20UTG2-56,SI20UTG2-53",57,57,63,,13,13,14,,28,2288,"HK1003 -Blackpoint D2 - Rev.0E DD30092021"
1-3086,SI20UTG2-56,"(F) CONCRETE STRUCTURE DWGS ON SITE RELEASED FOR EXECUTION 20UTG04",5121,"HK1003-Rev.0E-3",TT_FinMile,"55902",-,-,-,0,TK_NotStart,16/01/2022,,16/01/2022,,"SI20UTG2-51 FS,SI20UTG2-52 FS,SI20UTG2-55 FS","SI20UTG2-51,SI20UTG2-52,SI20UTG2-55","SI20UTG5-40 FS","SI20UTG5-40",76,,76,,17,,17,,46,3328,"HK1003 -Blackpoint D2 - Rev.0E DD30092021"
1-3087,SI20UTG2-49,"(MS3) CONCRETE STRUCTURE FINAL DIMENSIONS, LOADS AVAILABLE 20UTG04",5121,"HK1003-Rev.0E-3",TT_FinMile,"55902",-,-,-,100,TK_Complete,30/06/2021,30/06/2021,30/06/2021,30/06/2021,"SI--PM-2-30 FS","SI--PM-2-30","SI20UTG2-50 FS,SI20UTG2-52 FS,SI20UTG2-51 FS,SI20UTG2S-42 FS","SI20UTG2-50,SI20UTG2-52,SI20UTG2-51,SI20UTG2S-42",47,47,47,47,11,11,11,11,19,,"HK1003 -Blackpoint D2 - Rev.0E DD30092021"
1-3088,SI20UTG2-53,"CLIENT - REVIEW - DETAIL DESIGN CONCRETE 20UTG04",5121,"HK1003-Rev.0E-3",TT_Task,"55902",-,-,-,0,TK_NotStart,21/10/2021,,14/11/2021,,"SI20UTG2-51 FS,SI20UTG2-52 FS,SI20UTG2-52 FF","SI20UTG2-51,SI20UTG2-52,SI20UTG2-52","SI20UTG2-54 SS","SI20UTG2-54",63,,67,,14,,15,,35,2288,"HK1003 -Blackpoint D2 - Rev.0E DD30092021"
1-3089,SI20UTG2-54,"BD - SUBMISSION & APPROVAL - DETAIL DESIGN CONCRETE 20UTG04",5121,"HK1003-Rev.0E-3",TT_Task,"55902",-,-,-,0,TK_NotStart,21/10/2021,,19/12/2021,,"SI20UTG2-53 SS,SI-P221-85& FS,SI--UBA2-96 SS,SI-P222-77 FS","SI20UTG2-53,SI-P221-85&,SI--UBA2-96,SI-P222-77","SI20UTG2-55 FS,SI20UTG2S-46 FS,SI20UTG2-93 FS","SI20UTG2-55,SI20UTG2S-46,SI20UTG2-93",63,,72,,14,,16,,35,2288,"HK1003 -Blackpoint D2 - Rev.0E DD30092021"
1-3090,SI20UTG2-55,"BD - CONSENT LETTER - DETAIL DESIGN CONCRETE 20UTG04",5121,"HK1003-Rev.0E-3",TT_Task,"55902",-,-,-,0,TK_NotStart,20/12/2021,,16/01/2022,,"SI20UTG2-54 FS","SI20UTG2-54","SI20UTG2-56 FS,SI20UTG2-94 FS","SI20UTG2-56,SI20UTG2-94",72,,76,,16,,17,,43,3328,"HK1003 -Blackpoint D2 - Rev.0E DD30092021"
1-3091,SI20UTG2-58,"BASIC BUILDING DESIGN INCL. 3D MODEL 20UTG02",5121,"HK1003-Rev.0E-3",TT_Task,"55902",-,-,-,100,TK_Complete,11/06/2021,11/06/2021,01/07/2021,01/07/2021,"SI20UTG2-57 FS","SI20UTG2-57","SI20UTG2-59 FS","SI20UTG2-59",44,44,47,47,10,10,11,11,16,,"HK1003 -Blackpoint D2 - Rev.0E DD30092021"
1-3092,SI20UTG2-60,"PREPARATION FOUNDATION GROUNDING DWGS UTG 20UTG02",5121,"HK1003-Rev.0E-3",TT_Task,"55902",-,-,-,100,TK_Complete,02/08/2021,02/08/2021,15/08/2021,15/08/2021,"SI20UTG2-59 FF,SI20UTG2-57 FS","SI20UTG2-59,SI20UTG2-57","SI20UTG2-64 FS,SI20UTG2-61 FS,SI20UTG2-61 FF","SI20UTG2-64,SI20UTG2-61,SI20UTG2-61",52,52,54,54,12,12,12,12,24,,"HK1003 -Blackpoint D2 - Rev.0E DD30092021"
1-3093,SI20UTG2-59,"DETAIL DESIGN CONCRETE STRUCTURE 20UTG02",5121,"HK1003-Rev.0E-3",TT_Task,"55902",-,-,-,100,TK_Complete,02/07/2021,02/07/2021,15/08/2021,15/08/2021,"SI20UTG2-58 FS,SI20UTG2-57 FS","SI20UTG2-58,SI20UTG2-57","SI20UTG2-60 FF,SI20UTG2-64 FS,SI20UTG2-61 FS","SI20UTG2-60,SI20UTG2-64,SI20UTG2-61",47,47,54,54,11,11,12,12,20,,"HK1003 -Blackpoint D2 - Rev.0E DD30092021"
1-3094,SI20UTG2-64,"(F) CONCRETE STRUCTURE DWGS ON SITE RELEASED FOR EXECUTION 20UTG02",5121,"HK1003-Rev.0E-3",TT_FinMile,"55902",-,-,-,0,TK_NotStart,29/04/2022,,29/04/2022,,"SI20UTG2-59 FS,SI20UTG2-60 FS,SI20UTG2-63 FS","SI20UTG2-59,SI20UTG2-60,SI20UTG2-63","SI20UTG5-20 FS","SI20UTG5-20",90,,90,,21,,21,,60,2504,"HK1003 -Blackpoint D2 - Rev.0E DD30092021"
1-3095,SI20UTG2-57,"(MS3) CONCRETE STRUCTURE FINAL DIMENSIONS, LOADS AVAILABLE 20UTG02",5121,"HK1003-Rev.0E-3",TT_FinMile,"55902",-,-,-,100,TK_Complete,10/06/2021,10/06/2021,10/06/2021,10/06/2021,"SI--PM-2-30 FS","SI--PM-2-30","SI20UTG2-58 FS,SI20UTG2-60 FS,SI20UTG2-59 FS,SI20UTG2S-62 FS","SI20UTG2-58,SI20UTG2-60,SI20UTG2-59,SI20UTG2S-62",44,44,44,44,10,10,10,10,16,,"HK1003 -Blackpoint D2 - Rev.0E DD30092021"
1-3096,SI20UTG2-61,"CLIENT - REVIEW - DETAIL DESIGN CONCRETE 20UTG02",5121,"HK1003-Rev.0E-3",TT_Task,"55902",-,-,-,82,TK_Active,16/08/2021,16/08/2021,09/10/2021,,"SI20UTG2-59 FS,SI20UTG2-60 FS,SI20UTG2-60 FF","SI20UTG2-59,SI20UTG2-60,SI20UTG2-60","SI20UTG2-62 FS","SI20UTG2-62",54,54,62,,12,12,14,,26,2376,"HK1003 -Blackpoint D2 - Rev.0E DD30092021"
1-3097,SI20UTG2-62,"BD - SUBMISSION & APPROVAL - DETAIL DESIGN CONCRETE 20UTG02",5121,"HK1003-Rev.0E-3",TT_Task,"55902",-,-,-,0,TK_NotStart,10/10/2021,,08/12/2021,,"SI20UTG2-61 FS,SI-P221-140& FS,SI--UBA2-96 SS,SI-P222-77 FS","SI20UTG2-61,SI-P221-140&,SI--UBA2-96,SI-P222-77","SI20UTG2-63 FS,SI20UTG2-70 SS,SI20UTG2S-66 FS,SI20UTG2-95 FS","SI20UTG2-63,SI20UTG2-70,SI20UTG2S-66,SI20UTG2-95",62,,70,,14,,16,,32,2376,"HK1003 -Blackpoint D2 - Rev.0E DD30092021"
1-3098,SI20UTG2-63,"BD - CONSENT LETTER - DETAIL DESIGN CONCRETE 20UTG02",5121,"HK1003-Rev.0E-3",TT_Task,"55902",-,-,-,0,TK_NotStart,09/12/2021,,05/01/2022,,"SI20UTG2-62 FS","SI20UTG2-62","SI20UTG2-64 FS,SI20UTG2-96 FS","SI20UTG2-64,SI20UTG2-96",70,,74,,16,,17,,41,3416,"HK1003 -Blackpoint D2 - Rev.0E DD30092021"
1-3099,SI20UTG2-66,"BASIC BUILDING DESIGN INCL. 3D MODEL 20UTG03",5121,"HK1003-Rev.0E-3",TT_Task,"55902",-,-,-,100,TK_Complete,01/05/2021,01/05/2021,21/05/2021,21/05/2021,"SI20UTG2-65 FS","SI20UTG2-65","SI20UTG2-67 FS","SI20UTG2-67",39,39,41,41,9,9,9,9,10,,"HK1003 -Blackpoint D2 - Rev.0E DD30092021"
1-3100,SI20UTG2-68,"PREPARATION FOUNDATION GROUNDING DWGS UTG 20UTG03",5121,"HK1003-Rev.0E-3",TT_Task,"55902",-,-,-,100,TK_Complete,22/06/2021,22/06/2021,05/07/2021,05/07/2021,"SI20UTG2-67 FF,SI20UTG2-65 FS","SI20UTG2-67,SI20UTG2-65","SI20UTG2-72 FS,SI20UTG2-69 FS,SI20UTG2-69 FF","SI20UTG2-72,SI20UTG2-69,SI20UTG2-69",46,46,48,48,10,10,11,11,18,,"HK1003 -Blackpoint D2 - Rev.0E DD30092021"
1-3101,SI20UTG2-67,"DETAIL DESIGN CONCRETE STRUCTURE 20UTG03",5121,"HK1003-Rev.0E-3",TT_Task,"55902",-,-,-,100,TK_Complete,22/05/2021,22/05/2021,05/07/2021,05/07/2021,"SI20UTG2-66 FS,SI20UTG2-65 FS","SI20UTG2-66,SI20UTG2-65","SI20UTG2-68 FF,SI20UTG2-72 FS,SI20UTG2-69 FS","SI20UTG2-68,SI20UTG2-72,SI20UTG2-69",42,42,48,48,9,9,11,11,13,,"HK1003 -Blackpoint D2 - Rev.0E DD30092021"
1-3102,SI20UTG2-72,"(F) CONCRETE STRUCTURE DWGS ON SITE RELEASED FOR EXECUTION 20UTG03",5121,"HK1003-Rev.0E-3",TT_FinMile,"55902",-,-,-,0,TK_NotStart,08/04/2022,,08/04/2022,,"SI20UTG2-67 FS,SI20UTG2-68 FS,SI20UTG2-71 FS","SI20UTG2-67,SI20UTG2-68,SI20UTG2-71","SI20UTG5-30 FS","SI20UTG5-30",87,,87,,20,,20,,57,2672,"HK1003 -Blackpoint D2 - Rev.0E DD30092021"
1-3103,SI20UTG2-65,"(MS3) CONCRETE STRUCTURE FINAL DIMENSIONS, LOADS AVAILABLE 20UTG03",5121,"HK1003-Rev.0E-3",TT_FinMile,"55902",-,-,-,100,TK_Complete,30/04/2021,30/04/2021,30/04/2021,30/04/2021,"SI--PM-2-30 FS","SI--PM-2-30","SI20UTG2-66 FS,SI20UTG2-68 FS,SI20UTG2-67 FS,SI20UTG2S-82 FS","SI20UTG2-66,SI20UTG2-68,SI20UTG2-67,SI20UTG2S-82",38,38,38,38,9,9,9,9,10,,"HK1003 -Blackpoint D2 - Rev.0E DD30092021"
1-3104,SI20UTG2-69,"CLIENT - REVIEW - DETAIL DESIGN CONCRETE 20UTG03",5121,"HK1003-Rev.0E-3",TT_Task,"55902",-,-,-,100,TK_Complete,06/07/2021,06/07/2021,30/07/2021,30/07/2021,"SI20UTG2-67 FS,SI20UTG2-68 FS,SI20UTG2-68 FF","SI20UTG2-67,SI20UTG2-68,SI20UTG2-68","SI20UTG2-70 FS,SI20UTG2-97 FS","SI20UTG2-70,SI20UTG2-97",48,48,51,51,11,11,12,12,21,,"HK1003 -Blackpoint D2 - Rev.0E DD30092021"
1-3105,SI20UTG2-70,"BD - SUBMISSION & APPROVAL - DETAIL DESIGN CONCRETE 20UTG03",5121,"HK1003-Rev.0E-3",TT_Task,"55902",-,-,-,0,TK_NotStart,10/10/2021,,08/12/2021,,"SI20UTG2-69 FS,SI20UTG2-62 SS,SI-P221-160& FS,SI--UBA2-96 SS,SI-P222-77 FS","SI20UTG2-69,SI20UTG2-62,SI-P221-160&,SI--UBA2-96,SI-P222-77","SI20UTG2-71 FS,SI20UTG2S-86 FS","SI20UTG2-71,SI20UTG2S-86",62,,70,,14,,16,,32,2376,"HK1003 -Blackpoint D2 - Rev.0E DD30092021"
1-3106,SI20UTG2-71,"BD - CONSENT LETTER - DETAIL DESIGN CONCRETE 20UTG03",5121,"HK1003-Rev.0E-3",TT_Task,"55902",-,-,-,0,TK_NotStart,09/12/2021,,05/01/2022,,"SI20UTG2-70 FS","SI20UTG2-70","SI20UTG2-72 FS,SI20UTG2-98 FS","SI20UTG2-72,SI20UTG2-98",70,,74,,16,,17,,41,3416,"HK1003 -Blackpoint D2 - Rev.0E DD30092021"
1-3107,SI20UTG2-74,"BASIC BUILDING DESIGN INCL. 3D MODEL 20UTG05",5121,"HK1003-Rev.0E-3",TT_Task,"55902",-,-,-,100,TK_Complete,16/08/2021,16/08/2021,05/09/2021,05/09/2021,"SI20UTG2-73 FS,SI20UTG2-10 SS","SI20UTG2-73,SI20UTG2-10","SI20UTG2-75 FS","SI20UTG2-75",54,54,57,57,12,12,13,13,26,,"HK1003 -Blackpoint D2 - Rev.0E DD30092021"
1-3108,SI20UTG2-76,"PREPARATION FOUNDATION GROUNDING DWGS UTG 20UTG05",5121,"HK1003-Rev.0E-3",TT_Task,"55902",-,-,-,0,TK_NotStart,07/10/2021,,20/10/2021,,"SI20UTG2-75 FF,SI20UTG2-73 FS","SI20UTG2-75,SI20UTG2-73","SI20UTG2-80 FS,SI20UTG2-77 FS,SI20UTG2-77 FF","SI20UTG2-80,SI20UTG2-77,SI20UTG2-77",61,,63,,14,,14,,32,3328,"HK1003 -Blackpoint D2 - Rev.0E DD30092021"
1-3109,SI20UTG2-75,"DETAIL DESIGN CONCRETE STRUCTURE 20UTG05",5121,"HK1003-Rev.0E-3",TT_Task,"55902",-,-,-,53,TK_Active,06/09/2021,06/09/2021,20/10/2021,,"SI20UTG2-74 FS,SI20UTG2-73 FS","SI20UTG2-74,SI20UTG2-73","SI20UTG2-76 FF,SI20UTG2-80 FS,SI20UTG2-77 FS","SI20UTG2-76,SI20UTG2-80,SI20UTG2-77",57,57,63,,13,13,14,,28,3328,"HK1003 -Blackpoint D2 - Rev.0E DD30092021"
1-3110,SI20UTG2-80,"(F) CONCRETE STRUCTURE DWGS ON SITE RELEASED FOR EXECUTION 20UTG05",5121,"HK1003-Rev.0E-3",TT_FinMile,"55902",-,-,-,0,TK_NotStart,28/04/2022,,28/04/2022,,"SI20UTG2-75 FS,SI20UTG2-76 FS,SI20UTG2-79 FS","SI20UTG2-75,SI20UTG2-76,SI20UTG2-79","SI20UTG5-50 FS","SI20UTG5-50",90,,90,,21,,21,,59,2512,"HK1003 -Blackpoint D2 - Rev.0E DD30092021"
1-3111,SI20UTG2-73,"(MS3) CONCRETE STRUCTURE FINAL DIMENSIONS, LOADS AVAILABLE 20UTG05",5121,"HK1003-Rev.0E-3",TT_FinMile,"55902",-,-,-,100,TK_Complete,05/07/2021,05/07/2021,05/07/2021,05/07/2021,"SI--PM-2-30 FS","SI--PM-2-30","SI20UTG2-74 FS,SI20UTG2-76 FS,SI20UTG2-75 FS,SI20UTG2S-102 FS","SI20UTG2-74,SI20UTG2-76,SI20UTG2-75,SI20UTG2S-102",48,48,48,48,11,11,11,11,20,,"HK1003 -Blackpoint D2 - Rev.0E DD30092021"
1-3112,SI20UTG2-77,"CLIENT - REVIEW - DETAIL DESIGN CONCRETE 20UTG05",5121,"HK1003-Rev.0E-3",TT_Task,"55902",-,-,-,0,TK_NotStart,21/10/2021,,14/11/2021,,"SI20UTG2-75 FS,SI20UTG2-76 FS,SI20UTG2-76 FF","SI20UTG2-75,SI20UTG2-76,SI20UTG2-76","SI20UTG2-78 SS","SI20UTG2-78",63,,67,,14,,15,,35,3328,"HK1003 -Blackpoint D2 - Rev.0E DD30092021"
1-3113,SI20UTG2-78,"BD - SUBMISSION & APPROVAL - DETAIL DESIGN CONCRETE 20UTG05",5121,"HK1003-Rev.0E-3",TT_Task,"55902",-,-,-,0,TK_NotStart,21/10/2021,,19/12/2021,,"SI20UTG2-77 SS,SI-P221-240& FS,SI20UBZ2-86 SS,SI--UBA2-96 SS,SI-P222-77 FS","SI20UTG2-77,SI-P221-240&,SI20UBZ2-86,SI--UBA2-96,SI-P222-77","SI20UTG2-79 FS,SI20UTG2-99 FS","SI20UTG2-79,SI20UTG2-99",63,,72,,14,,16,,35,3328,"HK1003 -Blackpoint D2 - Rev.0E DD30092021"
1-3114,SI20UTG2-79,"BD - CONSENT LETTER - DETAIL DESIGN CONCRETE 20UTG05",5121,"HK1003-Rev.0E-3",TT_Task,"55902",-,-,-,0,TK_NotStart,20/12/2021,,16/01/2022,,"SI20UTG2-78 FS","SI20UTG2-78","SI20UTG2-80 FS,SI20UTG2-100 FS","SI20UTG2-80,SI20UTG2-100",72,,76,,16,,17,,43,3328,"HK1003 -Blackpoint D2 - Rev.0E DD30092021"
1-3115,SI20UTG2-82,"BASIC BUILDING DESIGN INCL. 3D MODEL 20UTG06",5121,"HK1003-Rev.0E-3",TT_Task,"55902",-,-,-,100,TK_Complete,16/08/2021,16/08/2021,05/09/2021,05/09/2021,"SI20UTG2-81 FS,SI20UTG2-10 SS","SI20UTG2-81,SI20UTG2-10","SI20UTG2-83 FS","SI20UTG2-83",54,54,57,57,12,12,13,13,26,,"HK1003 -Blackpoint D2 - Rev.0E DD30092021"
1-3116,SI20UTG2-84,"PREPARATION FOUNDATION GROUNDING DWGS UTG 20UTG06",5121,"HK1003-Rev.0E-3",TT_Task,"55902",-,-,-,0,TK_NotStart,07/10/2021,,20/10/2021,,"SI20UTG2-83 FF,SI20UTG2-81 FS","SI20UTG2-83,SI20UTG2-81","SI20UTG2-88 FS,SI20UTG2-85 FS,SI20UTG2-85 FF","SI20UTG2-88,SI20UTG2-85,SI20UTG2-85",61,,63,,14,,14,,32,3328,"HK1003 -Blackpoint D2 - Rev.0E DD30092021"
1-3117,SI20UTG2-83,"DETAIL DESIGN CONCRETE STRUCTURE 20UTG06",5121,"HK1003-Rev.0E-3",TT_Task,"55902",-,-,-,53,TK_Active,06/09/2021,06/09/2021,20/10/2021,,"SI20UTG2-82 FS,SI20UTG2-81 FS","SI20UTG2-82,SI20UTG2-81","SI20UTG2-84 FF,SI20UTG2-88 FS,SI20UTG2-85 FS","SI20UTG2-84,SI20UTG2-88,SI20UTG2-85",57,57,63,,13,13,14,,28,3328,"HK1003 -Blackpoint D2 - Rev.0E DD30092021"
1-3118,SI20UTG2-88,"(F) CONCRETE STRUCTURE DWGS ON SITE RELEASED FOR EXECUTION 20UTG06",5121,"HK1003-Rev.0E-3",TT_FinMile,"55902",-,-,-,0,TK_NotStart,20/03/2022,,20/03/2022,,"SI20UTG2-83 FS,SI20UTG2-84 FS,SI20UTG2-87 FS","SI20UTG2-83,SI20UTG2-84,SI20UTG2-87","SI20UTG5-60 FS","SI20UTG5-60",85,,85,,19,,19,,53,2824,"HK1003 -Blackpoint D2 - Rev.0E DD30092021"
1-3119,SI20UTG2-81,"(MS3) CONCRETE STRUCTURE FINAL DIMENSIONS, LOADS AVAILABLE 20UTG06",5121,"HK1003-Rev.0E-3",TT_FinMile,"55902",-,-,-,100,TK_Complete,26/07/2021,26/07/2021,26/07/2021,26/07/2021,"SI--PM-2-30 FS","SI--PM-2-30","SI20UTG2-82 FS,SI20UTG2-84 FS,SI20UTG2-83 FS,SI20UTG2S-122 FS","SI20UTG2-82,SI20UTG2-84,SI20UTG2-83,SI20UTG2S-122",51,51,51,51,11,11,11,11,23,,"HK1003 -Blackpoint D2 - Rev.0E DD30092021"
1-3120,SI20UTG2-85,"CLIENT - REVIEW - DETAIL DESIGN CONCRETE 20UTG06",5121,"HK1003-Rev.0E-3",TT_Task,"55902",-,-,-,0,TK_NotStart,21/10/2021,,14/11/2021,,"SI20UTG2-83 FS,SI20UTG2-84 FS,SI20UTG2-84 FF","SI20UTG2-83,SI20UTG2-84,SI20UTG2-84","SI20UTG2-86 SS","SI20UTG2-86",63,,67,,14,,15,,35,3328,"HK1003 -Blackpoint D2 - Rev.0E DD30092021"
1-3121,SI20UTG2-86,"BD - SUBMISSION & APPROVAL - DETAIL DESIGN CONCRETE 20UTG06",5121,"HK1003-Rev.0E-3",TT_Task,"55902",-,-,-,0,TK_NotStart,21/10/2021,,19/12/2021,,"SI20UTG2-85 SS,SI-P221-320& FS,SI--UBA2-96 SS,SI-P222-77 FS","SI20UTG2-85,SI-P221-320&,SI--UBA2-96,SI-P222-77","SI20UTG2-87 FS,SI20UTG2-101 FS","SI20UTG2-87,SI20UTG2-101",63,,72,,14,,16,,35,3328,"HK1003 -Blackpoint D2 - Rev.0E DD30092021"
1-3122,SI20UTG2-87,"BD - CONSENT LETTER - DETAIL DESIGN CONCRETE 20UTG06",5121,"HK1003-Rev.0E-3",TT_Task,"55902",-,-,-,0,TK_NotStart,20/12/2021,,16/01/2022,,"SI20UTG2-86 FS","SI20UTG2-86","SI20UTG2-88 FS,SI20UTG2-102 FS","SI20UTG2-88,SI20UTG2-102",72,,76,,16,,17,,43,3328,"HK1003 -Blackpoint D2 - Rev.0E DD30092021"
1-3123,SI20BZP7-35,"ERECTION CABLE TRAYS ON 20UBY03",5121,"HK1003-Rev.0E-3",TT_Task,"55902",-,-,-,0,TK_NotStart,29/10/2022,,04/11/2022,,"SI20UBY5-60 FS,SI--BZP4B40 FS,SI20BZP7-26 FS,SI--PEE7-20 FS,SI20BZP7-140 FS","SI20UBY5-60,SI--BZP4B40,SI20BZP7-26,SI--PEE7-20,SI20BZP7-140","SI20BZP7B10# FF,SI20BZP7B10# SS,SI20BZK7B48 FS","SI20BZP7B10#,SI20BZP7B10#,SI20BZK7B48",117,,117,,27,,27,,84,760,"HK1003 -Blackpoint D2 - Rev.0E DD30092021"
1-3124,SI20UBY2-44,"PREPARATION FOUNDATION GROUNDING DWGS UBY02",5121,"HK1003-Rev.0E-3",TT_Task,"55902",-,-,-,100,TK_Complete,02/08/2021,02/08/2021,15/08/2021,15/08/2021,"SI20UBY2-66 FF","SI20UBY2-66","SI20UBY2-45 FS","SI20UBY2-45",52,52,54,54,12,12,12,12,24,,"HK1003 -Blackpoint D2 - Rev.0E DD30092021"
1-3125,SI20UBY2-42,"BASIC BUILDING DESIGN INCL. 3D MODEL UBY02",5121,"HK1003-Rev.0E-3",TT_Task,"55902",-,-,-,0,TK_NotStart,07/10/2021,,27/10/2021,,"SI20UBY2-41 FS","SI20UBY2-41","SI20UBY2-43 FS","SI20UBY2-43",61,,64,,14,,15,,32,1360,"HK1003 -Blackpoint D2 - Rev.0E DD30092021"
1-3126,SI20UBY2-41,"(MS3) CONCRETE STRUCTURE FINAL DIMENSIONS, LOADS AVAILABLE UBY02",5121,"HK1003-Rev.0E-3",TT_FinMile,"55902",-,-,-,0,TK_NotStart,06/10/2021,,06/10/2021,,"SI--UM-2-35 FS,SI--UR-2-35 FS,SI--B--2A55 FS,SI--B--2-66 FS","SI--UM-2-35,SI--UR-2-35,SI--B--2A55,SI--B--2-66","SI20UBY2-43 FS,SI20UBY2-42 FS","SI20UBY2-43,SI20UBY2-42",61,,61,,14,,14,,32,1360,"HK1003 -Blackpoint D2 - Rev.0E DD30092021"
1-3127,SI20UBY2-48,"(F) CONCRETE STRUCTURE DWGS ON SITE RELEASED FOR EXECUTION UBY02",5121,"HK1003-Rev.0E-3",TT_FinMile,"55902",-,-,-,0,TK_NotStart,30/06/2022,,30/06/2022,,"SI20UBY2-43 FS,SI20UBY2-47 FS","SI20UBY2-43,SI20UBY2-47","SI20UBY5-49 FS","SI20UBY5-49",99,,99,,23,,23,,72,1144,"HK1003 -Blackpoint D2 - Rev.0E DD30092021"
1-3128,SI20UBY2-43,"DETAIL DESIGN CONCRETE STRUCTURE UBY02",5121,"HK1003-Rev.0E-3",TT_Task,"55902",-,-,-,0,TK_NotStart,28/10/2021,,11/12/2021,,"SI20UBY2-42 FS,SI20UBY2-41 FS","SI20UBY2-42,SI20UBY2-41","SI20UBY2-48 FS,SI20UBY2-46 FS","SI20UBY2-48,SI20UBY2-46",64,,71,,15,,16,,36,1360,"HK1003 -Blackpoint D2 - Rev.0E DD30092021"
1-3129,SI20UBY2-45,"CLIENT - REVIEW - DETAIL DESIGN CONCRETE - UBY02",5121,"HK1003-Rev.0E-3",TT_Task,"55902",-,-,-,100,TK_Complete,16/08/2021,16/08/2021,09/09/2021,09/09/2021,"SI20UBY2-44 FS,SI20UBY2-66 FS","SI20UBY2-44,SI20UBY2-66","SI20UBY2-67 FS","SI20UBY2-67",54,54,57,57,12,12,13,13,26,,"HK1003 -Blackpoint D2 - Rev.0E DD30092021"
1-3130,SI20UBY2-46,"BD - SUBMISSION & APPROVAL - DETAIL DESIGN CONCRETE - AMENDMENT UBY02",5121,"HK1003-Rev.0E-3",TT_Task,"55902",-,-,-,0,TK_NotStart,20/01/2022,,18/02/2022,,"SI-P221-185& FS,SI--UBA2-96 SS,SI20UBY2-47 FS,SI20UBY2-43 FS","SI-P221-185&,SI--UBA2-96,SI20UBY2-47,SI20UBY2-43","SI20UBN2-104 SS,SI20UBN2-30 SS,SI20UEX2-45 SS,SI20UEX2-104 SS,SI20UBY5-49 FS,SI20UBY2-68 FS","SI20UBN2-104,SI20UBN2-30,SI20UEX2-45,SI20UEX2-104,SI20UBY5-49,SI20UBY2-68",76,,80,,17,,18,,46,1048,"HK1003 -Blackpoint D2 - Rev.0E DD30092021"
1-3131,SI20UBY2-47,"BD - CONSENT LETTER - DESIGN  UBY02",5121,"HK1003-Rev.0E-3",TT_Task,"55902",-,-,-,0,TK_NotStart,09/12/2021,,19/01/2022,,"SI20UBY2-67 FS","SI20UBY2-67","SI20UBY2-48 FS,SI20UBY2-46 FS,SI20UBY2-69 FS","SI20UBY2-48,SI20UBY2-46,SI20UBY2-69",70,,76,,16,,17,,41,1048,"HK1003 -Blackpoint D2 - Rev.0E DD30092021"
1-3132,SI20UBY2-52,"PREPARATION FOUNDATION GROUNDING DWGS UBY03",5121,"HK1003-Rev.0E-3",TT_Task,"55902",-,-,-,0,TK_NotStart,05/10/2021,,18/10/2021,,"SI20UBY2-51 FF","SI20UBY2-51","SI20UBY2-53 FS","SI20UBY2-53",61,,63,,14,,14,,31,1264,"HK1003 -Blackpoint D2 - Rev.0E DD30092021"
1-3133,SI20UBY2-50,"BASIC BUILDING DESIGN INCL. 3D MODEL UBY03",5121,"HK1003-Rev.0E-3",TT_Task,"55902",-,-,-,100,TK_Complete,30/07/2021,30/07/2021,03/09/2021,03/09/2021,"SI20UBY2-49 FS","SI20UBY2-49","SI20UBY2-51 FS","SI20UBY2-51",51,51,56,56,12,12,13,13,23,,"HK1003 -Blackpoint D2 - Rev.0E DD30092021"
1-3134,SI20UBY2-49,"(MS3) CONCRETE STRUCTURE FINAL DIMENSIONS, LOADS AVAILABLE UBY03",5121,"HK1003-Rev.0E-3",TT_FinMile,"55902",-,-,-,100,TK_Complete,30/07/2021,30/07/2021,30/07/2021,30/07/2021,"SI--UR-2-35 FS,SI--B--2A55 FS,SI--B--2-66 FS","SI--UR-2-35,SI--B--2A55,SI--B--2-66","SI20UBY2-51 FS,SI20UBY2-50 FS","SI20UBY2-51,SI20UBY2-50",51,51,51,51,12,12,12,12,23,,"HK1003 -Blackpoint D2 - Rev.0E DD30092021"
1-3135,SI20UBY2-56,"(F) CONCRETE STRUCTURE DWGS ON SITE RELEASED FOR EXECUTION UBY03",5121,"HK1003-Rev.0E-3",TT_FinMile,"55902",-,-,-,0,TK_NotStart,04/05/2022,,04/05/2022,,"SI20UBY2-51 FS,SI20UBY2-55 FS","SI20UBY2-51,SI20UBY2-55","SI20UBY5-57 FS","SI20UBY5-57",91,,91,,21,,21,,61,1264,"HK1003 -Blackpoint D2 - Rev.0E DD30092021"
1-3136,SI20UBY2-51,"DETAIL DESIGN CONCRETE STRUCTURE UBY03",5121,"HK1003-Rev.0E-3",TT_Task,"55902",-,-,-,58,TK_Active,04/09/2021,04/09/2021,18/10/2021,,"SI20UBY2-50 FS,SI20UBY2-49 FS","SI20UBY2-50,SI20UBY2-49","SI20UBY2-52 FF,SI20UBY2-56 FS,SI20UBY2-53 FS","SI20UBY2-52,SI20UBY2-56,SI20UBY2-53",57,57,63,,13,13,14,,28,1264,"HK1003 -Blackpoint D2 - Rev.0E DD30092021"
1-3137,SI20UBY2-53,"CLIENT - REVIEW - DETAIL DESIGN CONCRETE - UBY03",5121,"HK1003-Rev.0E-3",TT_Task,"55902",-,-,-,0,TK_NotStart,19/10/2021,,12/11/2021,,"SI20UBY2-51 FS,SI20UBY2-52 FS","SI20UBY2-51,SI20UBY2-52","SI20UBY2-54 SS","SI20UBY2-54",63,,66,,14,,15,,35,1264,"HK1003 -Blackpoint D2 - Rev.0E DD30092021"
1-3138,SI20UBY2-54,"BD - SUBMISSION & APPROVAL - DETAIL DESIGN CONCRETE - UBY03",5121,"HK1003-Rev.0E-3",TT_Task,"55902",-,-,-,0,TK_NotStart,19/10/2021,,17/12/2021,,"SI20UBY2-53 SS,SI-P221-230& FS,SI--UBA2-96 SS","SI20UBY2-53,SI-P221-230&,SI--UBA2-96","SI20UBY2-55 FS,SI20UBY2-30 SS,SI20UBY2-72 FS","SI20UBY2-55,SI20UBY2-30,SI20UBY2-72",63,,71,,14,,16,,35,1264,"HK1003 -Blackpoint D2 - Rev.0E DD30092021"
1-3139,SI20UBY2-55,"BD - CONSENT LETTER - DESIGN  UBY03",5121,"HK1003-Rev.0E-3",TT_Task,"55902",-,-,-,0,TK_NotStart,18/12/2021,,14/01/2022,,"SI20UBY2-54 FS","SI20UBY2-54","SI20UBY2-56 FS,SI20UBY2-73 FS","SI20UBY2-56,SI20UBY2-73",72,,75,,16,,17,,43,2144,"HK1003 -Blackpoint D2 - Rev.0E DD30092021"
1-3140,SI20UBY2-60,"PREPARATION FOUNDATION GROUNDING DWGS UBY04/05",5121,"HK1003-Rev.0E-3",TT_Task,"55902",-,-,-,59,TK_Active,25/07/2021,25/07/2021,14/11/2021,,"SI20UBY2-59 FF","SI20UBY2-59","SI20UBY2-61 FF","SI20UBY2-61",51,51,67,,11,11,15,,23,536,"HK1003 -Blackpoint D2 - Rev.0E DD30092021"
1-3141,SI20UBY2-58,"BASIC BUILDING DESIGN INCL. 3D MODEL UBY04/05",5121,"HK1003-Rev.0E-3",TT_Task,"55902",-,-,-,100,TK_Complete,03/06/2021,03/06/2021,23/06/2021,23/06/2021,"SI20UBY2-57 FS","SI20UBY2-57","SI20UBY2-59 FS","SI20UBY2-59",43,43,46,46,10,10,10,10,15,,"HK1003 -Blackpoint D2 - Rev.0E DD30092021"
1-3142,SI20UBY2-57,"(MS3) CONCRETE STRUCTURE FINAL DIMENSIONS, LOADS AVAILABLE UBY04/05",5121,"HK1003-Rev.0E-3",TT_FinMile,"55902",-,-,-,100,TK_Complete,02/06/2021,02/06/2021,02/06/2021,02/06/2021,"SI--B--2-66 FS,SI--UE2-E38 FS,SI--UE2-E37 FS","SI--B--2-66,SI--UE2-E38,SI--UE2-E37","SI20UBY2-59 FS,SI20UBY2-58 FS","SI20UBY2-59,SI20UBY2-58",43,43,43,43,10,10,10,10,15,,"HK1003 -Blackpoint D2 - Rev.0E DD30092021"
1-3143,SI20UBY2-64,"(F) CONCRETE STRUCTURE DWGS ON SITE RELEASED FOR EXECUTION UBY04/05",5121,"HK1003-Rev.0E-3",TT_FinMile,"55902",-,-,-,0,TK_NotStart,10/02/2022,,10/02/2022,,"SI20UBY2-59 FS,SI20UBY2-63 FS","SI20UBY2-59,SI20UBY2-63","SI20UBY5-53 FS,SI20UBY4-53 FS","SI20UBY5-53,SI20UBY4-53",79,,79,,18,,18,,49,336,"HK1003 -Blackpoint D2 - Rev.0E DD30092021"
1-3144,SI20UBY2-59,"DETAIL DESIGN CONCRETE STRUCTURE UBY04/05",5121,"HK1003-Rev.0E-3",TT_Task,"55902",-,-,-,68,TK_Active,24/06/2021,24/06/2021,14/11/2021,,"SI20UBY2-58 FS,SI20UBY2-57 FS,SI--UE2-E38 FS","SI20UBY2-58,SI20UBY2-57,SI--UE2-E38","SI20UBY2-60 FF,SI20UBY2-64 FS,SI20UBY2-61 FF,SI20UBY2-62 FS","SI20UBY2-60,SI20UBY2-64,SI20UBY2-61,SI20UBY2-62",46,46,67,,10,10,15,,19,336,"HK1003 -Blackpoint D2 - Rev.0E DD30092021"
1-3145,SI20UBY2-61,"CLIENT - REVIEW - DETAIL DESIGN CONCRETE - UBY04/05",5121,"HK1003-Rev.0E-3",TT_Task,"55902",-,-,-,0,TK_NotStart,21/10/2021,,14/11/2021,,"SI20UBY2-59 FF,SI20UBY2-60 FF","SI20UBY2-59,SI20UBY2-60","SI20UBY2-62 SS,SI20UBY2-62 FF","SI20UBY2-62,SI20UBY2-62",63,,67,,14,,15,,35,536,"HK1003 -Blackpoint D2 - Rev.0E DD30092021"
1-3146,SI20UBY2-62,"BD - SUBMISSION & APPROVAL - DETAIL DESIGN CONCRETE - UBY04/05",5121,"HK1003-Rev.0E-3",TT_Task,"55902",-,-,-,0,TK_NotStart,15/11/2021,,13/01/2022,,"SI20UBY2-61 SS,SI20UBY2-61 FF,SI-P221-270& FS,SI--UBA2-96 SS,SI-P221-211& FS,SI20UBY2-59 FS","SI20UBY2-61,SI20UBY2-61,SI-P221-270&,SI--UBA2-96,SI-P221-211&,SI20UBY2-59","SI20UBY2-63 FS,SI20UGU2-64 SS,SI20UBY2-74 FS","SI20UBY2-63,SI20UGU2-64,SI20UBY2-74",67,,75,,15,,17,,38,336,"HK1003 -Blackpoint D2 - Rev.0E DD30092021"
1-3147,SI20UBY2-63,"BD - CONSENT LETTER - DESIGN  UBY04/05",5121,"HK1003-Rev.0E-3",TT_Task,"55902",-,-,-,0,TK_NotStart,14/01/2022,,10/02/2022,,"SI20UBY2-62 FS","SI20UBY2-62","SI20UBY2-64 FS,SI20UBY2-75 FS","SI20UBY2-64,SI20UBY2-75",75,,79,,17,,18,,45,336,"HK1003 -Blackpoint D2 - Rev.0E DD30092021"
1-3148,SI20USX2-30,"BD - SUBMISSION & APPROVAL - DETAIL DESIGN CONCRETE 20USX",5121,"HK1003-Rev.0E-3",TT_Task,"55902",-,-,-,0,TK_NotStart,05/11/2021,,03/01/2022,,"SI-P221-50& FS,SI--UBA2-96 SS,SI20USX2-42 FS,SI20USX2-25 SS","SI-P221-50&,SI--UBA2-96,SI20USX2-42,SI20USX2-25","SI20USX2-35 FS","SI20USX2-35",65,,74,,15,,17,,37,2392,"HK1003 -Blackpoint D2 - Rev.0E DD30092021"
1-3149,SI20USX2-25,"CLIENT - REVIEW - DETAIL DESIGN CONCRETE 20USX",5121,"HK1003-Rev.0E-3",TT_Task,"55902",-,-,-,0,TK_NotStart,05/11/2021,,29/11/2021,,"SI20USX2-20 FS,SI20USX2-42 FS","SI20USX2-20,SI20USX2-42","SI20USX2-30 SS","SI20USX2-30",65,,69,,15,,16,,37,2392,"HK1003 -Blackpoint D2 - Rev.0E DD30092021"
1-3150,SI20USX2-35,"BD - APPROVAL LETTER - DETAIL DESIGN CONCRETE 20USX",5121,"HK1003-Rev.0E-3",TT_Task,"55902",-,-,-,0,TK_NotStart,04/01/2022,,14/02/2022,,"SI20USX2-30 FS","SI20USX2-30","SI20USX2-40 FS,SI20USX2-43 FS,SI20USX2-45 FS","SI20USX2-40,SI20USX2-43,SI20USX2-45",74,,80,,17,,18,,44,2392,"HK1003 -Blackpoint D2 - Rev.0E DD30092021"
1-3151,SI20BZK7A28,"CABLING ELECTRICAL MODULES 20UBA (10x) TO TRANSFORMER AREA (BAT/BBT/BAC/GIL)",5121,"HK1003-Rev.0E-3",TT_Task,"55902",-,-,-,0,TK_NotStart,26/10/2022,,13/12/2022,,"SI20BZP7-160 FS,SI20UBA7-104 FS,SI20BZP7-90 FS,SI20BZP7-120 FF,SI20BBT7-16 FS,SI20MBJ7-10 FS,SI20BFT7-15 SS,SI20BZP7-80 FS,SI20UBA7-36 FS,SI20BAT7-15 FS,SI20BAC7-15 FS,SI20BAC7-16 FS,SI20BZK7-25 FS,SI--BZK4-40 FS","SI20BZP7-160,SI20UBA7-104,SI20BZP7-90,SI20BZP7-120,SI20BBT7-16,SI20MBJ7-10,SI20BFT7-15,SI20BZP7-80,SI20UBA7-36,SI20BAT7-15,SI20BAC7-15,SI20BAC7-16,SI20BZK7-25,SI--BZK4-40","SI20CJ-8-10 FS,SI20BFA8-10 FS,SI20BFT8-10 FS,SI--2226-55 FF,SI--2222-35 FS,SI20UBA8-12 FS,SI20BFA8-10 FF,SI20BZK7D10# FF,SI20BZK7D10# SS,SI20BZK7A35 FS,SI20BZL7-38 FS,SI20BFT8-78 FS,SI20BFT8-79 FS,SI20BA-8-11 FS,SI20BTA3A26 FS","SI20CJ-8-10,SI20BFA8-10,SI20BFT8-10,SI--2226-55,SI--2222-35,SI20UBA8-12,SI20BFA8-10,SI20BZK7D10#,SI20BZK7D10#,SI20BZK7A35,SI20BZL7-38,SI20BFT8-78,SI20BFT8-79,SI20BA-8-11,SI20BTA3A26",116,,123,,27,,28,,84,200,"HK1003 -Blackpoint D2 - Rev.0E DD30092021"
1-3152,SI20ACA2-45,"ERECTION MANUALS ON SITE  GIL 400kV 20ACA",5121,"HK1003-Rev.0E-3",TT_Mile,"55902",-,-,-,0,TK_NotStart,04/09/2022,,04/09/2022,,"SI20ACA3-55 FS","SI20ACA3-55","SI20ACA7-65 FS","SI20ACA7-65",109,,109,,25,,25,,80,152,"HK1003 -Blackpoint D2 - Rev.0E DD30092021"
1-3153,SI20ACA3-50,"LOGISTICS AND CUSTOMS PREPARATION GIL 400kV 20ACA",5121,"HK1003-Rev.0E-3",TT_Task,"55902",-,-,-,0,TK_NotStart,01/07/2022,,28/07/2022,,"SI20ACA3-40 FS","SI20ACA3-40","SI20ACA3-55 FS","SI20ACA3-55",99,,103,,23,,24,,72,152,"HK1003 -Blackpoint D2 - Rev.0E DD30092021"
1-3154,SI20ACA3-40,"TIMES OF COMPLETION (FINAL DATA IN KANLOG) GIL 400kV 20ACA",5121,"HK1003-Rev.0E-3",TT_FinMile,"55902",-,-,-,0,TK_NotStart,30/06/2022,,30/06/2022,,"SI20ACA3-25 FS","SI20ACA3-25","SI20ACA3-50 FS","SI20ACA3-50",99,,99,,23,,23,,72,152,"HK1003 -Blackpoint D2 - Rev.0E DD30092021"
1-3155,SI20ACA2-10,"QUOTATION STAGE GIL 400kV 20ACA",5121,"HK1003-Rev.0E-3",TT_Task,"55902",-,-,-,100,TK_Complete,26/03/2021,26/03/2021,17/06/2021,17/06/2021,"SI20ACA2-15 FS","SI20ACA2-15","SI20ACA2-30 FS","SI20ACA2-30",33,33,45,45,7,7,10,10,7,,"HK1003 -Blackpoint D2 - Rev.0E DD30092021"
1-3156,SI20ACA2-15,"RFQ GIL 400kV 20ACA",5121,"HK1003-Rev.0E-3",TT_Mile,"55902",-,-,-,100,TK_Complete,26/03/2021,26/03/2021,26/03/2021,26/03/2021,"SI20ACA2-5 FS","SI20ACA2-5","SI20ACA2-10 FS","SI20ACA2-10",33,33,33,33,7,7,7,7,7,,"HK1003 -Blackpoint D2 - Rev.0E DD30092021"
1-3157,SI20ACA2-5,"BASIC DESIGN / SPECIFICATION GIL 400kV 20ACA",5121,"HK1003-Rev.0E-3",TT_Task,"55902",-,-,-,100,TK_Complete,14/02/2021,14/02/2021,25/03/2021,25/03/2021,"SI-----1-05 FS","SI-----1-05","SI20ACA2-15 FS,SI20ACA2-35 FS,SI20ACA2-20 FS","SI20ACA2-15,SI20ACA2-35,SI20ACA2-20",28,28,33,33,6,6,7,7,4,,"HK1003 -Blackpoint D2 - Rev.0E DD30092021"
1-3158,SI20ACA7-70,"ERECTION GIL 400kV 20ACA",5121,"HK1003-Rev.0E-3",TT_Task,"55902",-,-,-,0,TK_NotStart,26/09/2022,,20/11/2022,,"SI20ACA7-65 FS","SI20ACA7-65","CL20ACA7-80 FS,CL20ACA7-80 SS,SI20ACA9-85 SS,SI20SGC6-15 FS,SI20ACA7-71 FS,SI20BAT7B72 FF,SI20BZK7D11# FF,SI20BZK7D11# SS","CL20ACA7-80,CL20ACA7-80,SI20ACA9-85,SI20SGC6-15,SI20ACA7-71,SI20BAT7B72,SI20BZK7D11#,SI20BZK7D11#",112,,120,,26,,28,,82,152,"HK1003 -Blackpoint D2 - Rev.0E DD30092021"
1-3159,SI20ACA3-25,"DETAIL DESIGN / MANUFACTURING / SHOP TEST GIL 400kV 20ACA",5121,"HK1003-Rev.0E-3",TT_Task,"55902",-,-,-,28,TK_Active,18/06/2021,18/06/2021,30/06/2022,,"SI20ACA2-30 FS","SI20ACA2-30","SI20ACA3-40 FS","SI20ACA3-40",45,45,99,,10,10,23,,18,152,"HK1003 -Blackpoint D2 - Rev.0E DD30092021"
1-3160,SI20ACA9-85,"COMMISSIONING GIL 400kV 20ACA",5121,"HK1003-Rev.0E-3",TT_Task,"55902",-,-,-,0,TK_NotStart,28/02/2023,,13/03/2023,,"CL20ACA7-80 FS,SI20ACA7-70 SS,SI20BAT7-15 FS,SI20ACA7-86 FS,SI-PM-40 FS,SI20ACA8-26 FS,SI20ACA8-27 FS,SI20TPE4A8-30 SS,SI20TPE5A8-30 FS","CL20ACA7-80,SI20ACA7-70,SI20BAT7-15,SI20ACA7-86,SI-PM-40,SI20ACA8-26,SI20ACA8-27,SI20TPE4A8-30,SI20TPE5A8-30","SI20B--8-50 FS,SI20ACA7-81# FF","SI20B--8-50,SI20ACA7-81#",134,,136,,31,,31,,92,240,"HK1003 -Blackpoint D2 - Rev.0E DD30092021"
1-3161,SI20ACA2-30,"CONTRACT INTO FORCE GIL 400kV 20ACA",5121,"HK1003-Rev.0E-3",TT_Mile,"55902",-,-,-,100,TK_Complete,18/06/2021,18/06/2021,18/06/2021,18/06/2021,"SI20ACA2-10 FS","SI20ACA2-10","SI20ACA2-35 FS,SI20ACA3-25 FS","SI20ACA2-35,SI20ACA3-25",45,45,45,45,10,10,10,10,18,,"HK1003 -Blackpoint D2 - Rev.0E DD30092021"
1-3162,SI20ACA7-65,"PLACEMENT GIL 400kV 20ACA",5121,"HK1003-Rev.0E-3",TT_Task,"55902",-,-,-,0,TK_NotStart,24/09/2022,,25/09/2022,,"SI20ACA2-45 FS,SI20ACA4-60 FS,SI20UBF5B45 FS,SI20BAT4-10 FS,SI20BAT7-15 FS,SI20BAA7-15 SS","SI20ACA2-45,SI20ACA4-60,SI20UBF5B45,SI20BAT4-10,SI20BAT7-15,SI20BAA7-15","SI20ACA7-70 FS,SI20ACA7-81# SS","SI20ACA7-70,SI20ACA7-81#",112,,112,,26,,26,,81,152,"HK1003 -Blackpoint D2 - Rev.0E DD30092021"
1-3163,SI20ACA2-35,"(DF) INPUT FOR MS3 GIL 400kV 20ACA",5121,"HK1003-Rev.0E-3",TT_FinMile,"55902",-,-,-,100,TK_Complete,09/08/2021,09/08/2021,09/08/2021,09/08/2021,"SI20ACA2-30 FS,SI20ACA2-5 FS","SI20ACA2-30,SI20ACA2-5","SI--UBF2-70 FF,SI20UBL2C-55 FS","SI--UBF2-70,SI20UBL2C-55",53,53,53,53,12,12,12,12,25,,"HK1003 -Blackpoint D2 - Rev.0E DD30092021"
1-3164,SI20ACA3-55,"(RFS) READY FOR SHIPMENT GIL 400kV 20ACA",5121,"HK1003-Rev.0E-3",TT_FinMile,"55902",-,-,-,0,TK_NotStart,28/07/2022,,28/07/2022,,"SI20ACA3-50 FS","SI20ACA3-50","SI20ACA2-45 FS,SI20ACA4-60 FS","SI20ACA2-45,SI20ACA4-60",103,,103,,24,,24,,75,152,"HK1003 -Blackpoint D2 - Rev.0E DD30092021"
1-3165,SI20ACA4-60,"TRANSPORT GIL 400kV 20ACA",5121,"HK1003-Rev.0E-3",TT_Task,"55902",-,-,-,0,TK_NotStart,29/07/2022,,22/09/2022,,"SI20ACA3-55 FS","SI20ACA3-55","SI20ACA7-65 FS","SI20ACA7-65",103,,111,,24,,26,,76,160,"HK1003 -Blackpoint D2 - Rev.0E DD30092021"
1-3166,SI20ACA2-20,"PRELIMINARY MS2 INPUT AVAILABLE GIL 400kV 20ACA",5121,"HK1003-Rev.0E-3",TT_Mile,"55902",-,-,-,100,TK_Complete,26/03/2021,26/03/2021,26/03/2021,26/03/2021,"SI20ACA2-5 FS","SI20ACA2-5","SI--UBF2-70 FS","SI--UBF2-70",33,33,33,33,7,7,7,7,7,,"HK1003 -Blackpoint D2 - Rev.0E DD30092021"
1-3167,CL20ACA7-80,"PULLING HV CABLES TO GIL BY CUSTOMER",5121,"HK1003-Rev.0E-3",TT_Task,"55902",-,-,-,0,TK_NotStart,05/12/2022,,15/01/2023,,"SI20ACA7-70 FS,SI20ACA7-70 SS,SI20BAT7-15 FS,SI20UBZ5-64 FS,SI20UBZ5-76 FS,SI20TP-260& FS,SI20ACA7-71 FS,SI20ACA7-71 FF","SI20ACA7-70,SI20ACA7-70,SI20BAT7-15,SI20UBZ5-64,SI20UBZ5-76,SI20TP-260&,SI20ACA7-71,SI20ACA7-71","SI20ACA9-85 FS,SI20ACA7-81 FS,SI20ACA7-81 FF,SI20ACA7-87# SS,SI20ACA8-27 FS,SI20TPE4A7-20 SS,SI20TPE5A7-20 SS","SI20ACA9-85,SI20ACA7-81,SI20ACA7-81,SI20ACA7-87#,SI20ACA8-27,SI20TPE4A7-20,SI20TPE5A7-20",122,,128,,28,,29,,86,192,"HK1003 -Blackpoint D2 - Rev.0E DD30092021"
1-3168,SI20--P6-77,"PREPARATION CHEMICAL CLEANING WSC",5121,"HK1003-Rev.0E-3",TT_Task,"55902",-,-,-,0,TK_NotStart,15/04/2023,,12/05/2023,,"SI20UMY6M70 FS,SI20LBA6J15 FS,SI20LBB6J15 FS,SI20LBG6A17 FS,SI20LBG6A15 FS,SI20LBB6J17 FF,SI20LBA6H15 FS,SI20LBA6J71 FF","SI20UMY6M70,SI20LBA6J15,SI20LBB6J15,SI20LBG6A17,SI20LBG6A15,SI20LBB6J17,SI20LBA6H15,SI20LBA6J71","SI20--P6-78 FF","SI20--P6-78",141,,144,,32,,33,,95,0,"HK1003 -Blackpoint D2 - Rev.0E DD30092021"
1-3169,SI20--P6-78,"COLD COMMISSIONING FOR CHEMICAL CLEANING WSC",5121,"HK1003-Rev.0E-3",TT_Task,"55902",-,-,-,0,TK_NotStart,22/04/2023,,12/05/2023,,"SI20--P6-77 FF,SI20PGB8B25 SS,SI-PM-40 FS,SI20B--8-52 FS,SI20B--8-50 FS","SI20--P6-77,SI20PGB8B25,SI-PM-40,SI20B--8-52,SI20B--8-50","SI20--P6-75 FS","SI20--P6-75",142,,144,,33,,33,,96,0,"HK1003 -Blackpoint D2 - Rev.0E DD30092021"
1-3170,CL20UGX5-40,"PROVISION OF TANK FOR CHEMICAL CLEANING WATER BY CLIENT",5121,"HK1003-Rev.0E-3",TT_Mile,"55902",-,-,-,0,TK_NotStart,01/04/2023,,01/04/2023,,"SI--ZTA4-25 FS","SI--ZTA4-25","SI20--P6-75 FS,SI20UGX8-45 FS,SI20ZTA6A00 FS","SI20--P6-75,SI20UGX8-45,SI20ZTA6A00",139,,139,,32,,32,,94,0,"HK1003 -Blackpoint D2 - Rev.0E DD30092021"
1-3171,SI20UGX8-45,"CLEAN OUT TANK (WATER AND SLUDGE)",5121,"HK1003-Rev.0E-3",TT_Task,"55902",-,-,-,0,TK_NotStart,03/06/2023,,16/06/2023,,"CL20UGX5-40 FS,SI20--P6-75 FS,SI20L--6A80 SS,SI-----1-05 FS","CL20UGX5-40,SI20--P6-75,SI20L--6A80,SI-----1-05","SI-----1-09 FS","SI-----1-09",148,,149,,34,,34,,98,1584,"HK1003 -Blackpoint D2 - Rev.0E DD30092021"
1-3172,SI20UQX5-50,"(H) START PLACING FORMWORK 20UQX",5121,"HK1003-Rev.0E-3",TT_Mile,"55902",-,-,-,0,TK_NotStart,01/03/2022,,01/03/2022,,"SI20UQX5-45 FS,SI20UQX2-42 FS","SI20UQX5-45,SI20UQX2-42","SI20UQX5-55 FS","SI20UQX5-55",82,,82,,19,,19,,51,2712,"HK1003 -Blackpoint D2 - Rev.0E DD30092021"
1-3173,SI20UQX5-45,"WORK PREPARATION, EXCAVATION 20UQX",5121,"HK1003-Rev.0E-3",TT_Task,"55902",-,-,-,0,TK_NotStart,15/02/2022,,28/02/2022,,"SI20UQX2-40 FS,SI-----5-23 FS,SI-----5-21& FS,SI-----5-20 FS,SI-P222-84 FS,SI20UQX2-41 FS","SI20UQX2-40,SI-----5-23,SI-----5-21&,SI-----5-20,SI-P222-84,SI20UQX2-41","SI20UQX5-50 FS,SI20UQ5-1# SS,SI-P222-131# FF,SI-P222-131# SS","SI20UQX5-50,SI20UQ5-1#,SI-P222-131#,SI-P222-131#",80,,82,,18,,19,,50,2712,"HK1003 -Blackpoint D2 - Rev.0E DD30092021"
1-3174,SI20UQX5-60,"(RFE) FOUNDATION 20UQX",5121,"HK1003-Rev.0E-3",TT_FinMile,"55902",-,-,-,0,TK_NotStart,14/03/2022,,14/03/2022,,"SI20UQX5-55 FS","SI20UQX5-55","SI20UQ5-1# FF,SI20PAA2-75 FS","SI20UQ5-1#,SI20PAA2-75",84,,84,,19,,19,,52,2712,"HK1003 -Blackpoint D2 - Rev.0E DD30092021"
1-3175,SI20UQX5-55,"CONSTRUCTION FOUNDATION 20UQX",5121,"HK1003-Rev.0E-3",TT_Task,"55902",-,-,-,0,TK_NotStart,01/03/2022,,14/03/2022,,"SI20UQX5-50 FS","SI20UQX5-50","SI20UQX5-60 FS","SI20UQX5-60",82,,84,,19,,19,,51,2712,"HK1003 -Blackpoint D2 - Rev.0E DD30092021"
1-3176,SI20UQX2-10,"BASIC BUILDING DESIGN INCL. 3D MODEL 20UQX",5121,"HK1003-Rev.0E-3",TT_Task,"55902",-,-,-,100,TK_Complete,11/06/2021,11/06/2021,01/07/2021,01/07/2021,"SI20UQX2-5 FS","SI20UQX2-5","SI20UQX2-15 FS","SI20UQX2-15",44,44,47,47,10,10,11,11,16,,"HK1003 -Blackpoint D2 - Rev.0E DD30092021"
1-3177,SI20UQX2-20,"PREPARATION FOUNDATION GROUNDING DWGS UTG 20UQX",5121,"HK1003-Rev.0E-3",TT_Task,"55902",-,-,-,74,TK_Active,02/09/2021,02/09/2021,09/10/2021,,"SI20UQX2-15 FF,SI20UQX2-5 FS","SI20UQX2-15,SI20UQX2-5","SI20UQX2-40 FS,SI20UQX2-25 FS","SI20UQX2-40,SI20UQX2-25",56,56,62,,13,13,14,,28,3032,"HK1003 -Blackpoint D2 - Rev.0E DD30092021"
1-3178,SI20UQX2-15,"DETAIL DESIGN CONCRETE STRUCTURE 20UQX",5121,"HK1003-Rev.0E-3",TT_Task,"55902",-,-,-,90,TK_Active,02/07/2021,02/07/2021,09/10/2021,,"SI20UQX2-10 FS,SI20UQX2-5 FS","SI20UQX2-10,SI20UQX2-5","SI20UQX2-20 FF,SI20UQX2-40 FS,SI20UQX2-25 FS","SI20UQX2-20,SI20UQX2-40,SI20UQX2-25",47,47,62,,11,11,14,,20,3032,"HK1003 -Blackpoint D2 - Rev.0E DD30092021"
1-3179,SI20UQX2-40,"(F) CONCRETE STRUCTURE DWGS ON SITE RELEASED FOR EXECUTION 20UQX",5121,"HK1003-Rev.0E-3",TT_FinMile,"55902",-,-,-,0,TK_NotStart,14/02/2022,,14/02/2022,,"SI20UQX2-15 FS,SI20UQX2-20 FS,SI20UQX2-35 FS","SI20UQX2-15,SI20UQX2-20,SI20UQX2-35","SI20UQX5-45 FS","SI20UQX5-45",80,,80,,18,,18,,49,2712,"HK1003 -Blackpoint D2 - Rev.0E DD30092021"
1-3180,SI20UQX2-5,"(MS3) CONCRETE STRUCTURE FINAL DIMENSIONS, LOADS AVAILABLE 20UQX",5121,"HK1003-Rev.0E-3",TT_FinMile,"55902",-,-,-,100,TK_Complete,11/06/2021,11/06/2021,11/06/2021,11/06/2021,"SI--PDB2B60 FS","SI--PDB2B60","SI20UQX2-10 FS,SI20UQX2-20 FS,SI20UQX2-15 FS","SI20UQX2-10,SI20UQX2-20,SI20UQX2-15",44,44,44,44,10,10,10,10,16,,"HK1003 -Blackpoint D2 - Rev.0E DD30092021"
1-3181,SI20UQX2-25,"CLIENT - REVIEW - DETAIL DESIGN CONCRETE 20UQX",5121,"HK1003-Rev.0E-3",TT_Task,"55902",-,-,-,0,TK_NotStart,10/10/2021,,03/11/2021,,"SI20UQX2-15 FS,SI20UQX2-20 FS","SI20UQX2-15,SI20UQX2-20","SI20UQX2-30 SS","SI20UQX2-30",62,,65,,14,,15,,32,3032,"HK1003 -Blackpoint D2 - Rev.0E DD30092021"
1-3182,SI20UQX2-30,"BD - SUBMISSION & APPROVAL - DETAIL DESIGN CONCRETE 20UQX",5121,"HK1003-Rev.0E-3",TT_Task,"55902",-,-,-,0,TK_NotStart,10/10/2021,,08/12/2021,,"SI20UQX2-25 SS,SI-P221-340& FS,SI--UBA2-96 SS","SI20UQX2-25,SI-P221-340&,SI--UBA2-96","SI20UQX2-35 FS,SI20UQX2-41 FS","SI20UQX2-35,SI20UQX2-41",62,,70,,14,,16,,32,3032,"HK1003 -Blackpoint D2 - Rev.0E DD30092021"
1-3183,SI20UQX2-35,"BD - CONSENT LETTER - DETAIL DESIGN CONCRETE 20UQX",5121,"HK1003-Rev.0E-3",TT_Task,"55902",-,-,-,0,TK_NotStart,09/12/2021,,05/01/2022,,"SI20UQX2-30 FS","SI20UQX2-30","SI20UQX2-40 FS,SI20UQX2-42 FS","SI20UQX2-40,SI20UQX2-42",70,,74,,16,,17,,41,3032,"HK1003 -Blackpoint D2 - Rev.0E DD30092021"
1-3184,SI20ULY4-95,"LOGISTICS AND CUSTOMS PREPARATION MODULE 20ULY01",5121,"HK1003-Rev.0E-3",TT_Task,"55902",-,-,-,0,TK_NotStart,14/04/2022,,11/05/2022,,"SI20ULY4-90 FS","SI20ULY4-90","SI20ULY4-100 FS","SI20ULY4-100",88,,92,,20,,21,,57,968,"HK1003 -Blackpoint D2 - Rev.0E DD30092021"
1-3185,SI20ULY4-90,"TIMES OF COMPLETION (FINAL DATA IN KANLOG) MODULE 20ULY01",5121,"HK1003-Rev.0E-3",TT_FinMile,"55902",-,-,-,0,TK_NotStart,13/04/2022,,13/04/2022,,"SI20ULY3-85 FS","SI20ULY3-85","SI20ULY4-95 FS","SI20ULY4-95",88,,88,,20,,20,,57,968,"HK1003 -Blackpoint D2 - Rev.0E DD30092021"
1-3186,SI20ULY4-100,"(RFS) READY FOR SHIPMENT MODULE 20ULY01",5121,"HK1003-Rev.0E-3",TT_FinMile,"55902",-,-,-,0,TK_NotStart,11/05/2022,,11/05/2022,,"SI20ULY4-95 FS","SI20ULY4-95","SI20ULY4-105 FS","SI20ULY4-105",92,,92,,21,,21,,64,968,"HK1003 -Blackpoint D2 - Rev.0E DD30092021"
1-3187,SI20ULY2-70,"BD - SUBMISSION & APPROVAL - STEEL STRUCTURE 20ULY01",5121,"HK1003-Rev.0E-3",TT_Task,"55902",-,-,-,0,TK_NotStart,10/10/2021,,08/12/2021,,"SI20ULY2-65 FS,SI-P221-530& SS","SI20ULY2-65,SI-P221-530&","SI20ULY2-80 FS","SI20ULY2-80",62,,70,,14,,16,,32,968,"HK1003 -Blackpoint D2 - Rev.0E DD30092021"
1-3188,SI20ULY2-80,"BD - CONSENT LETTER - STEEL STRUCTURE 20ULY01",5121,"HK1003-Rev.0E-3",TT_Task,"55902",-,-,-,0,TK_NotStart,09/12/2021,,05/01/2022,,"SI20ULY2-70 FS","SI20ULY2-70","SI20ULY2-75 FF","SI20ULY2-75",70,,74,,16,,17,,41,968,"HK1003 -Blackpoint D2 - Rev.0E DD30092021"
1-3189,SI20BZP7-55,"ERECTION CABLE TRAYS ON 20UQY01",5121,"HK1003-Rev.0E-3",TT_Task,"55902",-,-,-,0,TK_NotStart,29/10/2022,,11/11/2022,,"SI--BZP4B40 FS,SI20UQY5-149 FS,SI20BZP7-26 FS,SI--PEE7-20 FS,SI20BZP7-140 FS","SI--BZP4B40,SI20UQY5-149,SI20BZP7-26,SI--PEE7-20,SI20BZP7-140","SI20PA6-1# SS,SI20PA6-1# FF,SI20PAR7A16 FS,SI20BZP7B10# FF,SI20BZP7B10# SS,SI20BZK7B47 FS,SI20BZP7-196 FS","SI20PA6-1#,SI20PA6-1#,SI20PAR7A16,SI20BZP7B10#,SI20BZP7B10#,SI20BZK7B47,SI20BZP7-196",117,,118,,27,,27,,84,168,"HK1003 -Blackpoint D2 - Rev.0E DD30092021"
1-3190,SI20UQY2-84,"PREPARATION FOUNDATION GROUNDING DWGS 20UQY01",5121,"HK1003-Rev.0E-3",TT_Task,"55902",-,-,-,29,TK_Active,26/09/2021,26/09/2021,09/10/2021,,"SI20UQY2-83 FF","SI20UQY2-83","SI20UQY2-85 FS","SI20UQY2-85",60,60,62,,14,14,14,,30,808,"HK1003 -Blackpoint D2 - Rev.0E DD30092021"
1-3191,SI20UQY2-82,"BASIC BUILDING DESIGN INCL. 3D MODEL 20UQY01",5121,"HK1003-Rev.0E-3",TT_Task,"55902",-,-,-,100,TK_Complete,11/06/2021,11/06/2021,01/07/2021,01/07/2021,"SI20UQY2-81 FF,SI20UQY2-81 FS","SI20UQY2-81,SI20UQY2-81","SI20UQY2-83 FS","SI20UQY2-83",44,44,47,47,10,10,11,11,17,,"HK1003 -Blackpoint D2 - Rev.0E DD30092021"
1-3192,SI20UQY5-147,"(H) START PLACING FORMWORK PIPE / CABLE TRENCH 20UQY01",5121,"HK1003-Rev.0E-3",TT_Mile,"55902",-,-,-,0,TK_NotStart,03/03/2022,,03/03/2022,,"SI20UQY5-146 FS,SI20UQY2-106 FS","SI20UQY5-146,SI20UQY2-106","SI20UQY5-148 FS","SI20UQY5-148",82,,82,,19,,19,,51,1200,"HK1003 -Blackpoint D2 - Rev.0E DD30092021"
1-3193,SI20UQY5-148,"CONSTRUCTION FOUNDATION PIPE / CABLE TRENCH 20UQY01",5121,"HK1003-Rev.0E-3",TT_Task,"55902",-,-,-,0,TK_NotStart,03/03/2022,,23/03/2022,,"SI20UQY5-147 FS","SI20UQY5-147","SI20UQY5-149 FS","SI20UQY5-149",82,,85,,19,,19,,51,1200,"HK1003 -Blackpoint D2 - Rev.0E DD30092021"
1-3194,SI20UQY5-149,"(RFE) FOUNDATION PIPE / CABLE TRENCH 20UQY01",5121,"HK1003-Rev.0E-3",TT_FinMile,"55902",-,-,-,0,TK_NotStart,23/03/2022,,23/03/2022,,"SI20UQY5-148 FS","SI20UQY5-148","SI20BZP7-55 FS,SI20PAR6A15 FF,SI20UQ5-1# FF","SI20BZP7-55,SI20PAR6A15,SI20UQ5-1#",85,,85,,19,,19,,53,1200,"HK1003 -Blackpoint D2 - Rev.0E DD30092021"
1-3195,SI20UQY2-81,"(MS3) CONCRETE STRUCTURE FINAL DIMENSIONS, LOADS AVAILABLE 20UQY01",5121,"HK1003-Rev.0E-3",TT_FinMile,"55902",-,-,-,100,TK_Complete,10/06/2021,10/06/2021,10/06/2021,10/06/2021,"SI--UMY2-60 FS","SI--UMY2-60","SI20UQY2-82 FF,SI20UQY2-83 FS,SI20UQY2-82 FS,SI20UQZ2-93 FS,SI20UQY2-89 FS,SI20UQY2-97 FS","SI20UQY2-82,SI20UQY2-83,SI20UQY2-82,SI20UQZ2-93,SI20UQY2-89,SI20UQY2-97",44,44,44,44,10,10,10,10,16,,"HK1003 -Blackpoint D2 - Rev.0E DD30092021"
1-3196,SI20UQY5-146,"WORK PREPARATION, EXCAVATION PIPE / CABLE TRENCH 20UQY01 (TO BE ALIGNED WITH CLP)",5121,"HK1003-Rev.0E-3",TT_Task,"55902",-,-,-,0,TK_NotStart,17/02/2022,,02/03/2022,,"SI20UQY2-88 FS,SI-----5-23 FS,SI-----5-21& FS,SI-----5-20 FS,SI20UQZ5-157 FF,SI-P222-84 FS,SI20UQY2-105 FS","SI20UQY2-88,SI-----5-23,SI-----5-21&,SI-----5-20,SI20UQZ5-157,SI-P222-84,SI20UQY2-105","SI20UQY5-147 FS,SI20UQ5-1# SS,SI-P222-131# FF,SI-P222-131# SS","SI20UQY5-147,SI20UQ5-1#,SI-P222-131#,SI-P222-131#",80,,82,,18,,19,,50,1200,"HK1003 -Blackpoint D2 - Rev.0E DD30092021"
1-3197,SI20UQY2-88,"(F) CONCRETE STRUCTURE DWGS ON SITE RELEASED FOR EXECUTION 20UQY01",5121,"HK1003-Rev.0E-3",TT_FinMile,"55902",-,-,-,0,TK_NotStart,16/02/2022,,16/02/2022,,"SI20UQY2-83 FS,SI20UQY2-87 FS","SI20UQY2-83,SI20UQY2-87","SI20UQY5-146 FS","SI20UQY5-146",80,,80,,18,,18,,50,1200,"HK1003 -Blackpoint D2 - Rev.0E DD30092021"
1-3198,SI20UQY2-83,"DETAIL DESIGN CONCRETE STRUCTURE 20UQY01",5121,"HK1003-Rev.0E-3",TT_Task,"55902",-,-,-,90,TK_Active,02/07/2021,02/07/2021,09/10/2021,,"SI20UQY2-82 FS,SI20UQY2-81 FS","SI20UQY2-82,SI20UQY2-81","SI20UQY2-84 FF,SI20UQY2-88 FS,SI20UQY2-85 FS","SI20UQY2-84,SI20UQY2-88,SI20UQY2-85",47,47,62,,11,11,14,,20,808,"HK1003 -Blackpoint D2 - Rev.0E DD30092021"
1-3199,SI20UQY2-85,"CLIENT - REVIEW - DETAIL DESIGN CONCRETE - 20UQY01",5121,"HK1003-Rev.0E-3",TT_Task,"55902",-,-,-,0,TK_NotStart,10/10/2021,,03/11/2021,,"SI20UQY2-83 FS,SI20UQY2-84 FS","SI20UQY2-83,SI20UQY2-84","SI20UQY2-86 SS","SI20UQY2-86",62,,65,,14,,15,,33,808,"HK1003 -Blackpoint D2 - Rev.0E DD30092021"
1-3200,SI20UQY2-86,"BD - SUBMISSION & APPROVAL - DETAIL DESIGN CONCRETE - 20UQY01",5121,"HK1003-Rev.0E-3",TT_Task,"55902",-,-,-,0,TK_NotStart,10/10/2021,,08/12/2021,,"SI20UQY2-85 SS,SI-P221-345& FS,SI--UBA2-96 SS","SI20UQY2-85,SI-P221-345&,SI--UBA2-96","SI20UQY2-87 FS,SI20UQY2-87 FF,SI20UQZ2-106 SS,SI20UQY2-94 SS,SI20UQY2-105 FS","SI20UQY2-87,SI20UQY2-87,SI20UQZ2-106,SI20UQY2-94,SI20UQY2-105",62,,70,,14,,16,,33,808,"HK1003 -Blackpoint D2 - Rev.0E DD30092021"
1-3201,SI20UQY2-87,"BD - CONSENT LETTER - DESIGN  20UQY01",5121,"HK1003-Rev.0E-3",TT_Task,"55902",-,-,-,0,TK_NotStart,20/01/2022,,16/02/2022,,"SI20UQY2-86 FS,SI20UQY2-86 FF","SI20UQY2-86,SI20UQY2-86","SI20UQY2-88 FS,SI20UQY2-106 FS","SI20UQY2-88,SI20UQY2-106",76,,80,,17,,18,,46,1200,"HK1003 -Blackpoint D2 - Rev.0E DD30092021"
1-3202,SI20UQZ2-96,"PREPARATION FOUNDATION GROUNDING DWGS 20UQZ",5121,"HK1003-Rev.0E-3",TT_Task,"55902",-,-,-,74,TK_Active,02/09/2021,02/09/2021,09/10/2021,,"SI20UQZ2-95 FF","SI20UQZ2-95","SI20UQZ2-97 FF","SI20UQZ2-97",56,56,62,,13,13,14,,28,1280,"HK1003 -Blackpoint D2 - Rev.0E DD30092021"
1-3203,SI20UQZ2-94,"BASIC BUILDING DESIGN INCL. 3D MODEL 20UQZ",5121,"HK1003-Rev.0E-3",TT_Task,"55902",-,-,-,100,TK_Complete,11/06/2021,11/06/2021,01/07/2021,01/07/2021,"SI20UQZ2-93 FF,SI20UQZ2-93 FS","SI20UQZ2-93,SI20UQZ2-93","SI20UQZ2-95 FS","SI20UQZ2-95",44,44,47,47,10,10,11,11,17,,"HK1003 -Blackpoint D2 - Rev.0E DD30092021"
1-3204,SI20UQZ5-155,"(H) START PLACING FORMWORK PIPE & CABLE TRENCH 20UQZ",5121,"HK1003-Rev.0E-3",TT_Mile,"55902",-,-,-,0,TK_NotStart,20/01/2022,,20/01/2022,,"SI20UQZ5-154 FS,SI20UQZ2-112 FS","SI20UQZ5-154,SI20UQZ2-112","SI20UQZ5-156 FS","SI20UQZ5-156",76,,76,,17,,17,,46,1200,"HK1003 -Blackpoint D2 - Rev.0E DD30092021"
1-3205,SI20UQZ5-156,"CONSTRUCTION FOUNDATION PIPE & CABLE TRENCH 20UQZ",5121,"HK1003-Rev.0E-3",TT_Task,"55902",-,-,-,0,TK_NotStart,20/01/2022,,02/03/2022,,"SI20UQZ5-155 FS","SI20UQZ5-155","SI20UQZ5-157 FS","SI20UQZ5-157",76,,82,,17,,19,,46,1200,"HK1003 -Blackpoint D2 - Rev.0E DD30092021"
1-3206,SI20UQZ5-157,"(RFE) FOUNDATION PIPE & CABLE TRENCH 20UQZ",5121,"HK1003-Rev.0E-3",TT_FinMile,"55902",-,-,-,0,TK_NotStart,02/03/2022,,02/03/2022,,"SI20UQZ5-156 FS","SI20UQZ5-156","SI20PAR6A15 FF,SI20UQ5-1# FF,SI20BZP7-170 FS,SI20UQY5-146 FF","SI20PAR6A15,SI20UQ5-1#,SI20BZP7-170,SI20UQY5-146",82,,82,,19,,19,,51,1200,"HK1003 -Blackpoint D2 - Rev.0E DD30092021"
1-3207,SI20UQZ2-93,"(MS3) CONCRETE STRUCTURE FINAL DIMENSIONS, LOADS AVAILABLE 20UQZ",5121,"HK1003-Rev.0E-3",TT_FinMile,"55902",-,-,-,100,TK_Complete,10/06/2021,10/06/2021,10/06/2021,10/06/2021,"SI20UQY2-81 FS","SI20UQY2-81","SI20UQZ2-94 FF,SI20UQZ2-95 FS,SI20UQZ2-94 FS","SI20UQZ2-94,SI20UQZ2-95,SI20UQZ2-94",44,44,44,44,10,10,10,10,16,,"HK1003 -Blackpoint D2 - Rev.0E DD30092021"
1-3208,SI20UQZ5-154,"WORK PREPARATION, EXCAVATION PIPE & CABLE TRENCH 20UQZ (TO BE ALIGNED WITH CLP)",5121,"HK1003-Rev.0E-3",TT_Task,"55902",-,-,-,0,TK_NotStart,06/01/2022,,19/01/2022,,"SI20UQZ2-100 FS,SI-----5-21& FS,SI-----5-20 FS,SI-P222-84 FS,SI20UQZ2-111 FS","SI20UQZ2-100,SI-----5-21&,SI-----5-20,SI-P222-84,SI20UQZ2-111","SI20UQZ5-155 FS,SI20UQ5-1# SS,SI-P222-131# FF,SI-P222-131# SS,SI20UQY5-150 FS","SI20UQZ5-155,SI20UQ5-1#,SI-P222-131#,SI-P222-131#,SI20UQY5-150",74,,76,,17,,17,,44,1200,"HK1003 -Blackpoint D2 - Rev.0E DD30092021"
1-3209,SI20UQZ2-100,"(F) CONCRETE STRUCTURE DWGS ON SITE RELEASED FOR EXECUTION 20UQZ",5121,"HK1003-Rev.0E-3",TT_FinMile,"55902",-,-,-,0,TK_NotStart,05/01/2022,,05/01/2022,,"SI20UQZ2-95 FS,SI20UQZ2-99 FS","SI20UQZ2-95,SI20UQZ2-99","SI20UQZ5-154 FS","SI20UQZ5-154",74,,74,,17,,17,,44,1200,"HK1003 -Blackpoint D2 - Rev.0E DD30092021"
1-3210,SI20UQZ2-95,"DETAIL DESIGN CONCRETE STRUCTURE 20UQZ",5121,"HK1003-Rev.0E-3",TT_Task,"55902",-,-,-,90,TK_Active,02/07/2021,02/07/2021,09/10/2021,,"SI20UQZ2-94 FS,SI20UQZ2-93 FS","SI20UQZ2-94,SI20UQZ2-93","SI20UQZ2-96 FF,SI20UQZ2-100 FS,SI20UQZ2-97 FF","SI20UQZ2-96,SI20UQZ2-100,SI20UQZ2-97",47,47,62,,11,11,14,,20,1280,"HK1003 -Blackpoint D2 - Rev.0E DD30092021"
1-3211,SI20UQZ2-97,"CLIENT - REVIEW - DETAIL DESIGN CONCRETE - 20UQZ",5121,"HK1003-Rev.0E-3",TT_Task,"55902",-,-,-,60,TK_Active,15/09/2021,15/09/2021,09/10/2021,,"SI20UQZ2-95 FF,SI20UQZ2-96 FF","SI20UQZ2-95,SI20UQZ2-96","SI20UQZ2-98 SS","SI20UQZ2-98",58,58,62,,13,13,14,,29,1280,"HK1003 -Blackpoint D2 - Rev.0E DD30092021"
1-3212,SI20UQZ2-98,"BD - SUBMISSION & APPROVAL - DETAIL DESIGN CONCRETE - 20UQZ",5121,"HK1003-Rev.0E-3",TT_Task,"55902",-,-,-,0,TK_NotStart,10/10/2021,,08/12/2021,,"SI20UQZ2-97 SS,SI20UQY2-102 SS,SI-P221-360& FS,SI--UBA2-96 SS","SI20UQZ2-97,SI20UQY2-102,SI-P221-360&,SI--UBA2-96","SI20UQZ2-99 FS,SI20UQZ2-99 FF,SI20UQZ2-111 FS","SI20UQZ2-99,SI20UQZ2-99,SI20UQZ2-111",62,,70,,14,,16,,33,1200,"HK1003 -Blackpoint D2 - Rev.0E DD30092021"
1-3213,SI20UQZ2-99,"BD - CONSENT LETTER - DESIGN  20UQZ",5121,"HK1003-Rev.0E-3",TT_Task,"55902",-,-,-,0,TK_NotStart,09/12/2021,,05/01/2022,,"SI20UQZ2-98 FS,SI20UQZ2-98 FF","SI20UQZ2-98,SI20UQZ2-98","SI20UQZ2-100 FS,SI20UQZ2-112 FS","SI20UQZ2-100,SI20UQZ2-112",70,,74,,16,,17,,41,1200,"HK1003 -Blackpoint D2 - Rev.0E DD30092021"
1-3214,SI20UQZ2-104,"PREPARATION FOUNDATION GROUNDING DWGS CIVIL ADAPTION WORKS AT SCW PUMP HOUSE 20UQB",5121,"HK1003-Rev.0E-3",TT_Task,"55902",-,-,-,29,TK_Active,26/09/2021,26/09/2021,09/10/2021,,"SI20UQZ2-103 FF","SI20UQZ2-103","SI20UQZ2-105 FS","SI20UQZ2-105",60,60,62,,14,14,14,,30,808,"HK1003 -Blackpoint D2 - Rev.0E DD30092021"
1-3215,SI20UQZ5-159,"(H) START PLACING FORMWORK CIVIL ADAPTION WORKS AT SCW PUMP HOUSE 20UQB",5121,"HK1003-Rev.0E-3",TT_Mile,"55902",-,-,-,0,TK_NotStart,15/02/2022,,15/02/2022,,"SI20UQZ5-158 FS,SI20UQZ2-110 FS","SI20UQZ5-158,SI20UQZ2-110","SI20UQZ5-160 FS","SI20UQZ5-160",80,,80,,18,,18,,50,600,"HK1003 -Blackpoint D2 - Rev.0E DD30092021"
1-3216,SI20UQZ5-160,"CONCRETE WORKS - CIVIL ADAPTION WORKS AT SCW PUMP HOUSE 20UQB",5121,"HK1003-Rev.0E-3",TT_Task,"55902",-,-,-,0,TK_NotStart,15/02/2022,,21/02/2022,,"SI20UQZ5-159 FS","SI20UQZ5-159","SI20UQZ5-161 FS","SI20UQZ5-161",80,,81,,18,,18,,50,600,"HK1003 -Blackpoint D2 - Rev.0E DD30092021"
1-3217,SI20UQZ5-161,"(RFE) READY FOR ERECTION CIVIL ADAPTION WORKS AT SCW PUMP HOUSE 20UQB",5121,"HK1003-Rev.0E-3",TT_FinMile,"55902",-,-,-,0,TK_NotStart,21/02/2022,,21/02/2022,,"SI20UQZ5-160 FS","SI20UQZ5-160","SI20PAS6B15 FS,SI20UQ5-1# FF,SI20BZP7-26 FS","SI20PAS6B15,SI20UQ5-1#,SI20BZP7-26",81,,81,,18,,18,,50,600,"HK1003 -Blackpoint D2 - Rev.0E DD30092021"
1-3218,SI20UQZ5-158,"WORK PREPARATION, EXCAVATION CIVIL ADAPTION WORKS AT SCW PUMP HOUSE 20UQB",5121,"HK1003-Rev.0E-3",TT_Task,"55902",-,-,-,0,TK_NotStart,01/02/2022,,14/02/2022,,"SI20UQZ2-108 FS,SI-----5-23 FS,SI-----5-21& FS,SI-----5-20 FS,SI-P222-84 FS,SI20UQZ2-109 FS","SI20UQZ2-108,SI-----5-23,SI-----5-21&,SI-----5-20,SI-P222-84,SI20UQZ2-109","SI20UQZ5-159 FS,SI20UQ5-1# SS,SI-P222-131# FF,SI-P222-131# SS","SI20UQZ5-159,SI20UQ5-1#,SI-P222-131#,SI-P222-131#",78,,80,,18,,18,,47,600,"HK1003 -Blackpoint D2 - Rev.0E DD30092021"
1-3219,SI20UQZ2-108,"(F) CONCRETE STRUCTURE DWGS ON SITE RELEASED FOR EXECUTION CIVIL ADAPTION WORKS AT SCW PUMP HOUSE 20UQB",5121,"HK1003-Rev.0E-3",TT_FinMile,"55902",-,-,-,0,TK_NotStart,31/01/2022,,31/01/2022,,"SI20UQZ2-103 FS,SI20UQZ2-107 FS","SI20UQZ2-103,SI20UQZ2-107","SI20UQZ5-158 FS","SI20UQZ5-158",78,,78,,18,,18,,47,600,"HK1003 -Blackpoint D2 - Rev.0E DD30092021"
1-3220,SI20UQZ2-103,"DETAIL DESIGN CONCRETE  CIVIL ADAPTION WORKS AT SCW PUMP HOUSE 20UQB",5121,"HK1003-Rev.0E-3",TT_Task,"55902",-,-,-,90,TK_Active,02/07/2021,02/07/2021,09/10/2021,,"SI20PAS2B10 FS,SI20PAA2-30 FS","SI20PAS2B10,SI20PAA2-30","SI20UQZ2-104 FF,SI20UQZ2-108 FS,SI20UQZ2-105 FS","SI20UQZ2-104,SI20UQZ2-108,SI20UQZ2-105",47,47,62,,11,11,14,,20,808,"HK1003 -Blackpoint D2 - Rev.0E DD30092021"
1-3221,SI20UQZ2-105,"CLIENT - REVIEW - CIVIL ADAPTION WORKS AT SCW PUMP HOUSE 20UQB",5121,"HK1003-Rev.0E-3",TT_Task,"55902",-,-,-,0,TK_NotStart,10/10/2021,,03/11/2021,,"SI20UQZ2-103 FS,SI20UQZ2-104 FS","SI20UQZ2-103,SI20UQZ2-104","SI20UQZ2-106 SS","SI20UQZ2-106",62,,65,,14,,15,,33,808,"HK1003 -Blackpoint D2 - Rev.0E DD30092021"
1-3222,SI20UQZ2-106,"BD - SUBMISSION & APPROVAL - CIVIL ADAPTION WORKS AT SCW PUMP HOUSE 20UQB",5121,"HK1003-Rev.0E-3",TT_Task,"55902",-,-,-,0,TK_NotStart,10/10/2021,,08/12/2021,,"SI20UQZ2-105 SS,SI20UQY2-86 SS,SI-P221-460& FS,SI--UBA2-96 SS","SI20UQZ2-105,SI20UQY2-86,SI-P221-460&,SI--UBA2-96","SI20UQZ2-107 FS,SI20UQZ2-107 FF,SI20UQZ2-109 FS","SI20UQZ2-107,SI20UQZ2-107,SI20UQZ2-109",62,,70,,14,,16,,33,808,"HK1003 -Blackpoint D2 - Rev.0E DD30092021"
1-3223,SI20UQZ2-107,"BD - CONSENT LETTER - CIVIL ADAPTION WORKS AT SCW PUMP HOUSE 20UQB",5121,"HK1003-Rev.0E-3",TT_Task,"55902",-,-,-,0,TK_NotStart,09/12/2021,,05/01/2022,,"SI20UQZ2-106 FS,SI20UQZ2-106 FF","SI20UQZ2-106,SI20UQZ2-106","SI20UQZ2-108 FS,SI20UQZ2-110 FS","SI20UQZ2-108,SI20UQZ2-110",70,,74,,16,,17,,41,808,"HK1003 -Blackpoint D2 - Rev.0E DD30092021"
1-3224,SI--2M-22,"BD - SUBMISSION & APPROVAL - SUPPORTING FRAME FOR MODULES LOT 2 (UMCM1Y/UMCL1Y)",5121,"HK1003-Rev.0E-3",TT_Task,"55902",-,-,-,100,TK_Complete,05/07/2021,05/07/2021,02/09/2021,02/09/2021,"SI20---2B43 FS,SI20LAC2-10 FS,SI-P221-400& FS,SI-P221-397& FS","SI20---2B43,SI20LAC2-10,SI-P221-400&,SI-P221-397&","SI--2M-32 FS,SI20---2M23 FS,SI20---3M89 FS","SI--2M-32,SI20---2M23,SI20---3M89",48,48,56,56,11,11,13,13,20,,"HK1003 -Blackpoint D2 - Rev.0E DD30092021"
1-3225,SI--2M-32,"BD - CONSENT LETTER - SUPPORTING FRAME FOR MODULES LOT 2",5121,"HK1003-Rev.0E-3",TT_Task,"55902",-,-,-,96,TK_Active,03/09/2021,03/09/2021,30/09/2021,,"SI--2M-22 FS","SI--2M-22","SI20---3M10 FF","SI20---3M10",56,56,60,,13,13,14,,28,208,"HK1003 -Blackpoint D2 - Rev.0E DD30092021"
1-3226,SI--2M-23,"BD - SUBMISSION & APPROVAL - SUPPORTING FRAME FOR MODULES LOT 3 (UEY01Y/UEY02Y/UPY00Y)",5121,"HK1003-Rev.0E-3",TT_Task,"55902",-,-,-,97,TK_Active,03/08/2021,03/08/2021,01/10/2021,,"SI20---2B50 FS,SI20UEY2-10 FS,SI-P221-405& FS,SI-P221-398& FS,SI-P221-399& FS","SI20---2B50,SI20UEY2-10,SI-P221-405&,SI-P221-398&,SI-P221-399&","SI--2M-33 FS,SI20---2M25 FS,SI20UEY3-50 FF,SI20UEY3-25 FS,SI20UEY3-55 FS","SI--2M-33,SI20---2M25,SI20UEY3-50,SI20UEY3-25,SI20UEY3-55",52,52,60,,12,12,14,,24,984,"HK1003 -Blackpoint D2 - Rev.0E DD30092021"
1-3227,SI--2M-33,"BD - CONSENT LETTER - SUPPORTING FRAME FOR MODULES LOT 3",5121,"HK1003-Rev.0E-3",TT_Task,"55902",-,-,-,0,TK_NotStart,02/10/2021,,29/10/2021,,"SI--2M-23 FS","SI--2M-23","SI20---3M14 FF","SI20---3M14",61,,64,,14,,15,,31,984,"HK1003 -Blackpoint D2 - Rev.0E DD30092021"
1-3228,SI20BZP7-75,"ERECTION CABLE TRAYS BEFORE LIFTING OF MODULE 20UEY01",5121,"HK1003-Rev.0E-3",TT_Task,"55902",-,-,-,0,TK_NotStart,24/05/2022,,20/06/2022,,"SI--PEE7-20 FS,SI--BZP4B40 FS,SI--BZP2-05 FS,SI--2227-68 FS,SI20BZP7-172 FS,SI20BZP7-26 FS,SI--PEE7-20 SS","SI--PEE7-20,SI--BZP4B40,SI--BZP2-05,SI--2227-68,SI20BZP7-172,SI20BZP7-26,SI--PEE7-20","SI20UEY6-100 FS,SI20UEY6-105 FS,SI20UEY6-105 FF,SI20UEY6-85 FS,SI20BZP7B10# FF,SI20BZP7B10# SS,SI20BZK7B48 FS,SI20BZK7-190 FS","SI20UEY6-100,SI20UEY6-105,SI20UEY6-105,SI20UEY6-85,SI20BZP7B10#,SI20BZP7B10#,SI20BZK7B48,SI20BZK7-190",94,,98,,22,,22,,66,1232,"HK1003 -Blackpoint D2 - Rev.0E DD30092021"
1-3229,SI20BZP7D18,"FINALIZE CABLE TRAYS ON 20UEY01",5121,"HK1003-Rev.0E-3",TT_Task,"55902",-,-,-,0,TK_NotStart,04/07/2022,,10/07/2022,,"SI20UEY6-100 FS,SI20UEY6-105 FS,SI20UEY6-110 FS","SI20UEY6-100,SI20UEY6-105,SI20UEY6-110","SI20BZK7-187 FS,SI20MAA7A15 FS,SI20MAG7A15 FS,SI20MAJ7A15 FS,SI20MAL7A15 FS,SI20MAN7H15 FS,SI20MAV7H15 FS,SI20MAW7H15 FS,SI20MAX7H15 FS,SI20MB-7H15 FS,SI20MB-7J15 FS,SI20MBQ7H15 FS,SI20LBA7H15 FS,SI20LBA7H16 FS,SI20LBA7J15 FS,SI20LBA7J16 FS,SI20LBB7J15 FS,SI20LBB7J17 FS,SI20LBG7A17 FS,SI20LBG7A15 FS,SI20LAB7H15 FS,SI20LCA7A15 FS,SI20LCL7A15 FS,SI20LCW7H15 FS,SI20LDK7H16 FS,SI20EK-7H15 FS,SI20EK-7I15 FS,SI20PAB7A15 FS,SI20PAH7H15 FS,SI20PAR7A16 FS,SI20PCB7H15 FS,SI20PGB7H15 FS,SI20GHC7H15 FS,SI20GHC7H17 FS,SI20GHD7H15 FS,SI20QFB7H15 FS,SI20QU-7H15 FS,SI20BZK7B33 FS,SI20BZK7-190 FS","SI20BZK7-187,SI20MAA7A15,SI20MAG7A15,SI20MAJ7A15,SI20MAL7A15,SI20MAN7H15,SI20MAV7H15,SI20MAW7H15,SI20MAX7H15,SI20MB-7H15,SI20MB-7J15,SI20MBQ7H15,SI20LBA7H15,SI20LBA7H16,SI20LBA7J15,SI20LBA7J16,SI20LBB7J15,SI20LBB7J17,SI20LBG7A17,SI20LBG7A15,SI20LAB7H15,SI20LCA7A15,SI20LCL7A15,SI20LCW7H15,SI20LDK7H16,SI20EK-7H15,SI20EK-7I15,SI20PAB7A15,SI20PAH7H15,SI20PAR7A16,SI20PCB7H15,SI20PGB7H15,SI20GHC7H15,SI20GHC7H17,SI20GHD7H15,SI20QFB7H15,SI20QU-7H15,SI20BZK7B33,SI20BZK7-190",100,,101,,23,,23,,72,1200,"HK1003 -Blackpoint D2 - Rev.0E DD30092021"
1-3230,SI20SD-110&,"SHUTDOWN PERIOD FOR TP INTEGRATION (COMBUSTION INSPECTION D1) 2022",5121,"HK1003-Rev.0E-3",TT_Task,"55902",-,-,-,0,TK_NotStart,04/05/2022,,25/05/2022,,"SI-----1-05 FS,SI-----1-05 SS","SI-----1-05,SI-----1-05","SI20UEZ6B-10 SS,SI20UVM6B5 SS,SI20ULD6B15 SS,SI20UMY6B20 SS,SI20TPM14B6-20 FS,SI20TPM25A6-20 SS,SI20TPM29A6-20 SS,SI20TPF1A6-20 SS,SI20TPF1B6-20 SS,SI20TPF1C6-20 SS,SI20TPF2A6-20 SS,SI20TPM19A6-20 SS,SI20UCA7-16 SS,SI20UEZ6B-5 SS","SI20UEZ6B-10,SI20UVM6B5,SI20ULD6B15,SI20UMY6B20,SI20TPM14B6-20,SI20TPM25A6-20,SI20TPM29A6-20,SI20TPF1A6-20,SI20TPF1B6-20,SI20TPF1C6-20,SI20TPF2A6-20,SI20TPM19A6-20,SI20UCA7-16,SI20UEZ6B-5",91,,94,,21,,22,,61,696,"HK1003 -Blackpoint D2 - Rev.0E DD30092021"
1-3231,SI20SD-120&,"SHUTDOWN PERIOD AT EXISTING SCW PUMP HOUSE",5121,"HK1003-Rev.0E-3",TT_Task,"55902",-,-,-,0,TK_NotStart,01/02/2022,,30/04/2022,,"SI-----1-05 FS,SI-----1-05 SS","SI-----1-05,SI-----1-05","SI-----5-23 SS,SI20TPM15A6-20 SS","SI-----5-23,SI20TPM15A6-20",78,,91,,18,,21,,47,600,"HK1003 -Blackpoint D2 - Rev.0E DD30092021"
1-3232,SI-----8-7,"MV AVAILABLE (BACK ENERGISING 6,6kV) (possibility to reduce risks if it can be achieved earlier)",5121,"HK1003-Rev.0E-3",TT_FinMile,"55902",-,-,-,0,TK_NotStart,28/03/2023,,28/03/2023,,"SI-----1-05 FS,SI20UBA5-87 FS","SI-----1-05,SI20UBA5-87","SI20B--8-52 FS","SI20B--8-52",138,,138,,32,,32,,93,64,"HK1003 -Blackpoint D2 - Rev.0E DD30092021"
1-3233,SI20UHA2B-7,"CONTRACT INTO FORCE FOR EMBEDDED PARTS HRSG",5121,"HK1003-Rev.0E-3",TT_FinMile,"55902",-,-,-,100,TK_Complete,03/05/2021,03/05/2021,03/05/2021,03/05/2021,"SI20UHA2B-6 FS,SI-----1-05 FS","SI20UHA2B-6,SI-----1-05","SI20UHA2B-9 FS,SI20UHA2B-8 FS","SI20UHA2B-9,SI20UHA2B-8",39,39,39,39,9,9,9,9,11,,"HK1003 -Blackpoint D2 - Rev.0E DD30092021"
1-3234,SI20UHA2B-6,"QUOTATION FOR EMBEDDED PARTS HRSG",5121,"HK1003-Rev.0E-3",TT_Task,"55902",-,-,-,100,TK_Complete,23/03/2021,23/03/2021,03/05/2021,03/05/2021,"SI20UHA2B-5 FS","SI20UHA2B-5","SI20UHA2B-7 FS","SI20UHA2B-7",33,33,39,39,7,7,9,9,6,,"HK1003 -Blackpoint D2 - Rev.0E DD30092021"
1-3235,SI20UHA2B-5,"RFQ FOR EMBEDDED PARTS HRSG",5121,"HK1003-Rev.0E-3",TT_Task,"55902",-,-,-,100,TK_Complete,27/01/2021,27/01/2021,22/03/2021,22/03/2021,"SI-----1-05 FS,SI--HA-2-85 FS","SI-----1-05,SI--HA-2-85","SI20UHA2B-6 FS","SI20UHA2B-6",25,25,33,33,5,5,7,7,3,,"HK1003 -Blackpoint D2 - Rev.0E DD30092021"
1-3236,SI20SD-121&,"SHUTDOWN PERIOD FOR TP INTEGRATION (COMBUSTION INSPECTION D1) 2021",5121,"HK1003-Rev.0E-3",TT_Task,"55902",-,-,-,100,TK_Complete,29/04/2021,29/04/2021,02/05/2021,02/05/2021,"SI-----1-05 FS,SI-----1-05 SS","SI-----1-05,SI-----1-05","SI-----1-09 FS","SI-----1-09",38,38,39,39,9,9,9,9,10,,"HK1003 -Blackpoint D2 - Rev.0E DD30092021"
1-3237,SI20SD-122&,"SHUTDOWN PERIOD FOR TP INTEGRATION (TB2 OUTAGE D1)",5121,"HK1003-Rev.0E-3",TT_Task,"55902",-,-,-,100,TK_Complete,28/02/2021,28/02/2021,29/03/2021,29/03/2021,"SI-----1-05 FS,SI-----1-05 SS","SI-----1-05,SI-----1-05","SI-----1-09 FS","SI-----1-09",30,30,34,34,7,7,8,8,5,,"HK1003 -Blackpoint D2 - Rev.0E DD30092021"
1-3238,SI20SMM6-71,"CERTIFICATES FOR LIFTING APPLIANCES, LIFTING GEARS CRANES 20SMM01/02/03",5121,"HK1003-Rev.0E-3",TT_Task,"55902",-,-,-,0,TK_NotStart,02/05/2022,,30/06/2022,,"SI20SMM6-70 FS,SI20SMM6-74 FS","SI20SMM6-70,SI20SMM6-74","SI20MB-6-10 FS,SI20MA-6C11 FS,SI-P222-82 SS","SI20MB-6-10,SI20MA-6C11,SI-P222-82",91,,99,,21,,23,,61,368,"HK1003 -Blackpoint D2 - Rev.0E DD30092021"
1-3239,SI20UHW2-5,"BASIC DESIGN / BASIC BUILDING DESIGN INCL. 3D MODEL UHW",5121,"HK1003-Rev.0E-3",TT_Task,"55902",-,-,-,100,TK_Complete,13/05/2021,13/05/2021,02/06/2021,02/06/2021,"SI20UHW2-10 FS","SI20UHW2-10","SI20UHW2-15 FS","SI20UHW2-15",40,40,43,43,9,9,10,10,12,,"HK1003 -Blackpoint D2 - Rev.0E DD30092021"
1-3240,SI20UHW2-15,"DETAIL DESIGN CONCRETE STRUCTURE UHW",5121,"HK1003-Rev.0E-3",TT_Task,"55902",-,-,-,100,TK_Complete,03/06/2021,03/06/2021,17/07/2021,17/07/2021,"SI20UHW2-5 FS,SI20UHW2-10 FS","SI20UHW2-5,SI20UHW2-10","SI20UHW2-25 FF,SI20UHW2-40 FS,SI20UHW2-30 FS,SI20UHW2-30 FF","SI20UHW2-25,SI20UHW2-40,SI20UHW2-30,SI20UHW2-30",43,43,50,50,10,10,11,11,15,,"HK1003 -Blackpoint D2 - Rev.0E DD30092021"
1-3241,SI20UHW5-75,"(RFE) FOUNDATION 20UHW",5121,"HK1003-Rev.0E-3",TT_FinMile,"55902",-,-,-,0,TK_NotStart,24/12/2021,,24/12/2021,,"SI20UHW5-70 FS,SI20UHW5-70.08 FS","SI20UHW5-70,SI20UHW5-70.08","SI20UHW3-23 FS,SI20HB-6A17 FS","SI20UHW3-23,SI20HB-6A17",72,,72,,17,,17,,43,240,"HK1003 -Blackpoint D2 - Rev.0E DD30092021"
1-3242,SI20UHW2-40,"(F) CONCRETE STRUCTURE DWGS ON SITE RELEASED FOR EXECUTION UHW",5121,"HK1003-Rev.0E-3",TT_FinMile,"55902",-,-,-,100,TK_Complete,22/07/2021,22/07/2021,22/07/2021,22/07/2021,"SI20UHW2-15 FS,SI20UHW2-30 FS,SI20UHW2-50 FS","SI20UHW2-15,SI20UHW2-30,SI20UHW2-50","SI20UHW5-20 FS","SI20UHW5-20",50,50,50,50,11,11,11,11,22,,"HK1003 -Blackpoint D2 - Rev.0E DD30092021"
1-3243,SI20UHW5-70,"CONSTRUCTION STRUCTURE HRSG BLOWDOWN PIT 20UHW",5121,"HK1003-Rev.0E-3",TT_Task,"55902",-,-,-,0,TK_NotStart,13/10/2021,,24/12/2021,,"SI20UHW5-60 FS,SI20UHW5-65 SS,SI20UHW5-70.08 FF","SI20UHW5-60,SI20UHW5-65,SI20UHW5-70.08","SI20UHW5-75 FS,SI20UHW5-55# FF","SI20UHW5-75,SI20UHW5-55#",62,,72,,14,,17,,34,240,"HK1003 -Blackpoint D2 - Rev.0E DD30092021"
1-3244,SI20UHW5-60,"(H) START PLACING FORMWORK 20UHW",5121,"HK1003-Rev.0E-3",TT_Mile,"55902",-,-,-,0,TK_NotStart,13/10/2021,,13/10/2021,,"SI20UHW5-20 FS,SI20UHW2-45 FS,SI20UHW2-50 FS,SI20UHW5-20.03 FS","SI20UHW5-20,SI20UHW2-45,SI20UHW2-50,SI20UHW5-20.03","SI20UHW5-70 FS,SI20UHW5-65 FS,SI20UHW5-70.00 FS","SI20UHW5-70,SI20UHW5-65,SI20UHW5-70.00",62,,62,,14,,14,,34,240,"HK1003 -Blackpoint D2 - Rev.0E DD30092021"
1-3245,SI20UHW5-20,"WORK PREPARATION, EXCAVATION 20UHW",5121,"HK1003-Rev.0E-3",TT_Task,"55902",-,-,-,84,TK_Active,22/07/2021,22/07/2021,12/10/2021,,"SI20UHW2-40 FS,SI20UHW2-25 FS,SI-----5-20 FS,SI20UHW2-45 FS,SI-P222-84 FS,SI20UHW2-51 FF,SI20UHW5-20.03 FF","SI20UHW2-40,SI20UHW2-25,SI-----5-20,SI20UHW2-45,SI-P222-84,SI20UHW2-51,SI20UHW5-20.03","SI20UHW5-60 FS,SI20UHW5-65 FS,SI-P222-131# FF,SI-P222-131# SS","SI20UHW5-60,SI20UHW5-65,SI-P222-131#,SI-P222-131#",50,50,62,,11,11,14,,22,240,"HK1003 -Blackpoint D2 - Rev.0E DD30092021"
1-3246,SI20UHW2-25,"PREPARATION FOUNDATION GROUNDING DWGS UHW",5121,"HK1003-Rev.0E-3",TT_Task,"55902",-,-,-,100,TK_Complete,04/07/2021,04/07/2021,17/07/2021,17/07/2021,"SI20UHW2-15 FF","SI20UHW2-15","SI20UHW5-20 FS,SI20UHW2-30 FS","SI20UHW5-20,SI20UHW2-30",48,48,50,50,11,11,11,11,20,,"HK1003 -Blackpoint D2 - Rev.0E DD30092021"
1-3247,SI20UHW2-10,"(MS3) CONCRETE STRUCTURE FINAL DIMENSIONS, LOADS AVAILABLE UHW",5121,"HK1003-Rev.0E-3",TT_FinMile,"55902",-,-,-,100,TK_Complete,12/05/2021,12/05/2021,12/05/2021,12/05/2021,"SI--UHA2-60 FS,SI--LBH2D60 FS","SI--UHA2-60,SI--LBH2D60","SI20UHW2-15 FS,SI20UHW3-16 FS,SI20UHW2-5 FS","SI20UHW2-15,SI20UHW3-16,SI20UHW2-5",40,40,40,40,9,9,9,9,12,,"HK1003 -Blackpoint D2 - Rev.0E DD30092021"
1-3248,SI20UHW2-45,"BD - SUBMISSION & APPROVAL - DETAIL DESIGN CONCRETE - HRSG BLOWDOWN PIT DESIGN 20UHW",5121,"HK1003-Rev.0E-3",TT_Task,"55902",-,-,-,100,TK_Complete,02/08/2021,02/08/2021,31/08/2021,31/08/2021,"SI20UHW2-30 SS,SI20UHW2B04 FS,SI-P221-65& FS,SI--UHA2-79 SS","SI20UHW2-30,SI20UHW2B04,SI-P221-65&,SI--UHA2-79","SI20UHW5-60 FS,SI20UHW5-20 FS,SI20UHW2-51 FF,SI20UHW2-50 FS","SI20UHW5-60,SI20UHW5-20,SI20UHW2-51,SI20UHW2-50",52,52,56,56,12,12,13,13,24,,"HK1003 -Blackpoint D2 - Rev.0E DD30092021"
1-3249,SI20UHW2-30,"CLIENT - REVIEW - DETAIL DESIGN CONCRETE - HRSG BLOWDOWN PIT  20UHW",5121,"HK1003-Rev.0E-3",TT_Task,"55902",-,-,-,100,TK_Complete,18/07/2021,18/07/2021,11/08/2021,11/08/2021,"SI20UHW2-15 FS,SI20UHW2-15 FF,SI20UHW2-25 FS","SI20UHW2-15,SI20UHW2-15,SI20UHW2-25","SI20UHW2-45 SS,SI20UHW2-40 FS","SI20UHW2-45,SI20UHW2-40",50,50,53,53,11,11,12,12,22,,"HK1003 -Blackpoint D2 - Rev.0E DD30092021"
1-3250,SI20UHW2-50,"BD - CONSENT LETTER HRSG BLOWDOWN PIT DESIGN 20UHW",5121,"HK1003-Rev.0E-3",TT_Task,"55902",-,-,-,100,TK_Complete,15/06/2021,15/06/2021,10/09/2021,10/09/2021,"SI20UHW2B04 FS,SI20UHW2-45 FS","SI20UHW2B04,SI20UHW2-45","SI20UHW5-60 FS,SI20UHW2-40 FS,SI20UHW2-52 FS","SI20UHW5-60,SI20UHW2-40,SI20UHW2-52",45,45,57,57,10,10,13,13,17,,"HK1003 -Blackpoint D2 - Rev.0E DD30092021"
1-3251,SI20UHW5-65,"CONSTRUCTION BASE PLATE HRSG BLOWDOWN PIT 20UHW",5121,"HK1003-Rev.0E-3",TT_Task,"55902",-,-,-,0,TK_NotStart,13/10/2021,,02/11/2021,,"SI20UHW5-20 FS,SI20UHW5-60 FS","SI20UHW5-20,SI20UHW5-60","SI20UHW5-70 SS,SI20UHW5-55# SS","SI20UHW5-70,SI20UHW5-55#",62,,65,,14,,15,,34,240,"HK1003 -Blackpoint D2 - Rev.0E DD30092021"
1-3252,SI20UBH8-27,"COMMISSIONING OIL COLLECTION PIT / OIL SEPARATOR 20UBH01",5121,"HK1003-Rev.0E-3",TT_Task,"55902",-,-,-,0,TK_NotStart,11/04/2023,,17/04/2023,,"SI20UBH5-22 FS,SI20UBH5E48 FS,SI20GM-8E10 FS,SI-PM-40 FS,SI20B--8-52 FS,SI20B--8-50 FS,SI20CPA8-25 FS,SI20CPC8-27 FS,SI20CPD8-36 FS","SI20UBH5-22,SI20UBH5E48,SI20GM-8E10,SI-PM-40,SI20B--8-52,SI20B--8-50,SI20CPA8-25,SI20CPC8-27,SI20CPD8-36","SI20GM-8E25 FS","SI20GM-8E25",140,,141,,32,,32,,94,80,"HK1003 -Blackpoint D2 - Rev.0E DD30092021"
1-3253,SI20UMC2B66,"(MS3) HVAC / LOUVERS / EXHAUST OPENINGS INPUT AVAILABLE",5121,"HK1003-Rev.0E-3",TT_Mile,"55902",-,-,-,100,TK_Complete,15/06/2021,15/06/2021,15/06/2021,15/06/2021,"SI--SA-2-26 FS,SI--5552-85 FS","SI--SA-2-26,SI--5552-85","SI--UMC2B82 FS","SI--UMC2B82",45,45,45,45,10,10,10,10,17,,"HK1003 -Blackpoint D2 - Rev.0E DD30092021"
1-3254,SI--PAD2-92,"(DF) INPUT FOR M2 COOLING TOWER PAD",5121,"HK1003-Rev.0E-3",TT_FinMile,"55902",-,-,-,100,TK_Complete,24/03/2021,24/03/2021,24/03/2021,24/03/2021,"SI--PAD2-85 FS","SI--PAD2-85","SI---1P2A10 FS","SI---1P2A10",33,33,33,33,7,7,7,7,6,,"HK1003 -Blackpoint D2 - Rev.0E DD30092021"
1-3255,SI20PCC4B43,"(OTD-OS) ON SITE SERVICE CW PUMPS ELECTRICAL MODULES",5121,"HK1003-Rev.0E-3",TT_FinMile,"55902",-,-,-,0,TK_NotStart,20/04/2022,,20/04/2022,,"SI20PCC4B42 FS","SI20PCC4B42","SI20PCC6B16 FS","SI20PCC6B16",89,,89,,20,,20,,58,1904,"HK1003 -Blackpoint D2 - Rev.0E DD30092021"
1-3256,SI20PCC3B81,"DETAIL DESIGN, MANUFACTURING, SHOP TEST SERVICE CW PUMPS ELECTRICAL MODULES",5121,"HK1003-Rev.0E-3",TT_Task,"55902",-,-,-,47,TK_Active,15/06/2021,15/06/2021,26/01/2022,,"SI20PCC2A95 FS","SI20PCC2A95","SI20PCC3B82 FS","SI20PCC3B82",45,45,77,,10,10,18,,17,1904,"HK1003 -Blackpoint D2 - Rev.0E DD30092021"
1-3257,SI20PCC3B83,"(RFS) READY FOR SHIPMENT SERVICE CW PUMPS ELECTRICAL MODULES",5121,"HK1003-Rev.0E-3",TT_FinMile,"55902",-,-,-,0,TK_NotStart,23/02/2022,,23/02/2022,,"SI20PCC4B41 FS","SI20PCC4B41","SI20PCC4B42 FS","SI20PCC4B42",81,,81,,19,,19,,50,1904,"HK1003 -Blackpoint D2 - Rev.0E DD30092021"
1-3258,SI20PCC4B42,"TRANSPORT SERVICE CW PUMPS ELECTRICAL MODULES",5121,"HK1003-Rev.0E-3",TT_Task,"55902",-,-,-,0,TK_NotStart,24/02/2022,,20/04/2022,,"SI20PCC3B83 FS","SI20PCC3B83","SI20PCC4B43 FS","SI20PCC4B43",81,,89,,19,,20,,50,1904,"HK1003 -Blackpoint D2 - Rev.0E DD30092021"
1-3259,SI20PCC4B41,"LOGISTICS AND CUSTOMS PREPARATION - SERVICE CW PUMPS ELECTRICAL MODULES",5121,"HK1003-Rev.0E-3",TT_Task,"55902",-,-,-,0,TK_NotStart,27/01/2022,,23/02/2022,,"SI20PCC3B82 FS","SI20PCC3B82","SI20PCC3B83 FS","SI20PCC3B83",77,,81,,18,,19,,47,1904,"HK1003 -Blackpoint D2 - Rev.0E DD30092021"
1-3260,SI20PCC3B82,"TIMES OF COMPLETION (FINAL DATA IN KANLOG) - SERVICE CW PUMPS ELECTRICAL MODULES",5121,"HK1003-Rev.0E-3",TT_FinMile,"55902",-,-,-,0,TK_NotStart,26/01/2022,,26/01/2022,,"SI20PCC3B81 FS","SI20PCC3B81","SI20PCC4B41 FS","SI20PCC4B41",77,,77,,18,,18,,46,1904,"HK1003 -Blackpoint D2 - Rev.0E DD30092021"
1-3261,SI20PCC6B16,"ERECTION SERVICE CW PUMPS ELECTRICAL MODULES",5121,"HK1003-Rev.0E-3",TT_Task,"55902",-,-,-,0,TK_NotStart,05/05/2022,,15/06/2022,,"SI20PCC4B43 FS,SI20URD5-45 FS,SI20URD3-25 FS","SI20PCC4B43,SI20URD5-45,SI20URD3-25","SI20PGB6H15 FS","SI20PGB6H15",91,,97,,21,,22,,63,1904,"HK1003 -Blackpoint D2 - Rev.0E DD30092021"
1-3262,SI20PCC2A94,"QUOTATION STAGE, BASIC DESIGN SERVICE CW PUMPS ELECTRICAL MODULES",5121,"HK1003-Rev.0E-3",TT_Task,"55902",-,-,-,100,TK_Complete,18/03/2021,18/03/2021,12/05/2021,12/05/2021,"SI20PCC2A93 FS","SI20PCC2A93","SI20PCC2A95 FS","SI20PCC2A95",32,32,40,40,7,7,9,9,6,,"HK1003 -Blackpoint D2 - Rev.0E DD30092021"
1-3263,SI20PCC2A95,"CONTRACT INTO FORCE SERVICE CW PUMPS ELECTRICAL MODULES",5121,"HK1003-Rev.0E-3",TT_Mile,"55902",-,-,-,100,TK_Complete,15/06/2021,15/06/2021,15/06/2021,15/06/2021,"SI20PCC2A94 FS,SI20PAS2A85 FS,SI--PAC2B85 FS","SI20PCC2A94,SI20PAS2A85,SI--PAC2B85","SI20PCC3B81 FS,SI20PCC2B67 SS,SI20PCC2B66 SS,SI20PCC2A96 FS","SI20PCC3B81,SI20PCC2B67,SI20PCC2B66,SI20PCC2A96",45,45,45,45,10,10,10,10,17,,"HK1003 -Blackpoint D2 - Rev.0E DD30092021"
1-3264,SI20PCC2A93,"PREPARATION RFQ SERVICE CW PUMPS ELECTRICAL MODULES",5121,"HK1003-Rev.0E-3",TT_Task,"55902",-,-,-,100,TK_Complete,05/02/2021,05/02/2021,18/03/2021,18/03/2021,"SI20PAS2A91 SS","SI20PAS2A91","SI20PCC2A94 FS","SI20PCC2A94",26,26,32,32,6,6,7,7,4,,"HK1003 -Blackpoint D2 - Rev.0E DD30092021"
1-3265,SI20PCC2B66,"(DF) INPUT FOR MS3 SERVICE CW PUMPS ELECTRICAL MODULES",5121,"HK1003-Rev.0E-3",TT_FinMile,"55902",-,-,-,100,TK_Complete,13/05/2021,13/05/2021,13/05/2021,13/05/2021,"SI20PCC2A95 SS","SI20PCC2A95","SI--URD2-60 FS","SI--URD2-60",40,40,40,40,9,9,9,9,12,,"HK1003 -Blackpoint D2 - Rev.0E DD30092021"
1-3266,SI20PCC2B67,"(DF) INPUT FOR M2 SERVICE CW PUMPS ELECTRICAL MODULES",5121,"HK1003-Rev.0E-3",TT_FinMile,"55902",-,-,-,100,TK_Complete,04/05/2021,04/05/2021,04/05/2021,04/05/2021,"SI20PCC2A95 SS","SI20PCC2A95","SI---4P2A10 FS","SI---4P2A10",39,39,39,39,9,9,9,9,11,,"HK1003 -Blackpoint D2 - Rev.0E DD30092021"
1-3267,SI20PCC2A96,"(DF) INPUT FOR VEL SERVICE CW PUMPS ELECTRICAL MODULES",5121,"HK1003-Rev.0E-3",TT_Mile,"55902",-,-,-,100,TK_Complete,28/06/2021,28/06/2021,28/06/2021,28/06/2021,"SI20PCC2A95 FS","SI20PCC2A95","SP--B--2-61 FS,SI--B--2A55 FS","SP--B--2-61,SI--B--2A55",47,47,47,47,11,11,11,11,19,,"HK1003 -Blackpoint D2 - Rev.0E DD30092021"
1-3268,SI20UBH2-84,"DETAIL DESIGN, CHECKER CONCRETE STRUCTURE 20UBH02",5121,"HK1003-Rev.0E-3",TT_Task,"55902",-,-,-,100,TK_Complete,18/06/2021,18/06/2021,22/07/2021,22/07/2021,"SI20UBH2-83 FS","SI20UBH2-83","SI20UBH2-86 FS,SI20UBH2-90 FS,SI20UBH2-85 FF","SI20UBH2-86,SI20UBH2-90,SI20UBH2-85",45,45,50,50,10,10,11,11,18,,"HK1003 -Blackpoint D2 - Rev.0E DD30092021"
1-3269,SI20UBH2-86,"(F) CONCRETE STRUCTURE DWGS ON SITE RELEASED FOR EXECUTION 20UBH02",5121,"HK1003-Rev.0E-3",TT_FinMile,"55902",-,-,-,0,TK_NotStart,25/03/2022,,25/03/2022,,"SI20UBH2-84 FS,SI20UBH2-85 FS,SI20UBH2-92 FS","SI20UBH2-84,SI20UBH2-85,SI20UBH2-92","SI20UBH5-23 FS","SI20UBH5-23",85,,85,,20,,20,,54,2144,"HK1003 -Blackpoint D2 - Rev.0E DD30092021"
1-3270,SI20UBH2-82,"(MS3) CONCRETE STRUCTURE FINAL DIMENSIONS, LOADS AVAILABLE 20UBH02",5121,"HK1003-Rev.0E-3",TT_FinMile,"55902",-,-,-,100,TK_Complete,28/05/2021,28/05/2021,28/05/2021,28/05/2021,"SI--GM-2B60 FS","SI--GM-2B60","SI20UBH2-85 FS,SI20UBH2-83 FS","SI20UBH2-85,SI20UBH2-83",42,42,42,42,10,10,10,10,14,,"HK1003 -Blackpoint D2 - Rev.0E DD30092021"
1-3271,SI20UBH2-85,"PREPARATION FOUNDATION GROUNDING DWGS 20UBH02",5121,"HK1003-Rev.0E-3",TT_Task,"55902",-,-,-,100,TK_Complete,09/07/2021,09/07/2021,22/07/2021,22/07/2021,"SI20UBH2-82 FS,SI20UBH2-84 FF","SI20UBH2-82,SI20UBH2-84","SI20UBH2-86 FS","SI20UBH2-86",48,48,50,50,11,11,11,11,21,,"HK1003 -Blackpoint D2 - Rev.0E DD30092021"
1-3272,SI20UBH2-90,"CLIENT - REVIEW - DETAIL DESIGN CONCRETE - 20UBH02",5121,"HK1003-Rev.0E-3",TT_Task,"55902",-,-,-,100,TK_Complete,23/07/2021,23/07/2021,16/08/2021,16/08/2021,"SI20UBH2-84 FS,SI20UBH2-93 SS","SI20UBH2-84,SI20UBH2-93","SI20UBH2-91 FS","SI20UBH2-91",50,50,54,54,11,11,12,12,22,,"HK1003 -Blackpoint D2 - Rev.0E DD30092021"
1-3273,SI20UBH2-91,"BD - SUBMISSION & APPROVAL  - 20UBH02",5121,"HK1003-Rev.0E-3",TT_Task,"55902",-,-,-,73,TK_Active,17/08/2021,17/08/2021,15/10/2021,,"SI20UBH2-90 FS,SI20UBH2-94 SS,SI-P221-455& FS","SI20UBH2-90,SI20UBH2-94,SI-P221-455&","SI20UBH2-92 FS,SI20UBH2-98 FS","SI20UBH2-92,SI20UBH2-98",54,54,62,,12,12,14,,26,3208,"HK1003 -Blackpoint D2 - Rev.0E DD30092021"
1-3274,SI20UBH2-92,"BD - CONSENT LETTER - 20UBH02",5121,"HK1003-Rev.0E-3",TT_Task,"55902",-,-,-,0,TK_NotStart,16/10/2021,,12/11/2021,,"SI20UBH2-91 FS","SI20UBH2-91","SI20UBH2-86 FS,SI20UBH2-99 FS","SI20UBH2-86,SI20UBH2-99",63,,66,,14,,15,,34,3208,"HK1003 -Blackpoint D2 - Rev.0E DD30092021"
1-3275,SI20UBH2-83,"BASIC DESIGN INCL. 3D MODEL, OIL COLLECTING PIT / OIL SEPARATOR 20UBH02",5121,"HK1003-Rev.0E-3",TT_Task,"55902",-,-,-,100,TK_Complete,28/05/2021,28/05/2021,17/06/2021,17/06/2021,"SI20UBH2-82 FS","SI20UBH2-82","SI20UBH2-84 FS","SI20UBH2-84",42,42,45,45,10,10,10,10,14,,"HK1003 -Blackpoint D2 - Rev.0E DD30092021"
1-3276,SI20UBZ5-64,"(RFE) FOUNDATION 20UBZ01",5121,"HK1003-Rev.0E-3",TT_FinMile,"55902",-,-,-,0,TK_NotStart,03/06/2022,,03/06/2022,,"SI20UBZ5-62 FS","SI20UBZ5-62","CL20ACA7-80 FS,SI20UBY5-06 FS","CL20ACA7-80,SI20UBY5-06",95,,95,,22,,22,,68,144,"HK1003 -Blackpoint D2 - Rev.0E DD30092021"
1-3277,SI20UBZ5-62,"CONSTRUCTION FOUNDATION 20UBZ01",5121,"HK1003-Rev.0E-3",TT_Task,"55902",-,-,-,0,TK_NotStart,07/05/2022,,03/06/2022,,"SI20UBZ5-63 SS","SI20UBZ5-63","SI20UBZ5-64 FS","SI20UBZ5-64",92,,95,,21,,22,,63,144,"HK1003 -Blackpoint D2 - Rev.0E DD30092021"
1-3278,SI20UBZ5-61,"WORK PREPARATION, EXCAVATION 20UBZ01",5121,"HK1003-Rev.0E-3",TT_Task,"55902",-,-,-,0,TK_NotStart,23/04/2022,,06/05/2022,,"SI20UBZ2-72 FS,SI20UBF5-15 SS,SI-----5-21& FS,SI-----5-20 FS,SI20UBZ5-73 SS,SI-P222-84 FS,SI20UBZ2-101 FS","SI20UBZ2-72,SI20UBF5-15,SI-----5-21&,SI-----5-20,SI20UBZ5-73,SI-P222-84,SI20UBZ2-101","SI20UBZ5-63 FS,SI-P222-131# FF,SI-P222-131# SS","SI20UBZ5-63,SI-P222-131#,SI-P222-131#",90,,91,,21,,21,,59,144,"HK1003 -Blackpoint D2 - Rev.0E DD30092021"
1-3279,SI20UBZ5-63,"(H) START PLACING FORMWORK 20UBZ01",5121,"HK1003-Rev.0E-3",TT_Mile,"55902",-,-,-,0,TK_NotStart,07/05/2022,,07/05/2022,,"SI20UBZ5-61 FS,SI20UBZ2-102 FS","SI20UBZ5-61,SI20UBZ2-102","SI20UBZ5-62 SS","SI20UBZ5-62",92,,92,,21,,21,,63,144,"HK1003 -Blackpoint D2 - Rev.0E DD30092021"
1-3280,SI20UBZ2-68,"PREPARATION FOUNDATION GROUNDING DWGS 20UBZ01",5121,"HK1003-Rev.0E-3",TT_Task,"55902",-,-,-,100,TK_Complete,03/08/2021,03/08/2021,16/08/2021,16/08/2021,"SI20UBZ2-67 FF","SI20UBZ2-67","SI20UBZ2-69 FS,SI20UBZ2-69 FF","SI20UBZ2-69,SI20UBZ2-69",52,52,54,54,12,12,12,12,24,,"HK1003 -Blackpoint D2 - Rev.0E DD30092021"
1-3281,SI20UBZ2-66,"BASIC BUILDING DESIGN INCL. 3D MODEL 20UBZ01",5121,"HK1003-Rev.0E-3",TT_Task,"55902",-,-,-,100,TK_Complete,06/06/2021,06/06/2021,02/07/2021,02/07/2021,"SI20UBZ2-65 FS","SI20UBZ2-65","SI20UBZ2-67 FS","SI20UBZ2-67",44,44,47,47,10,10,11,11,16,,"HK1003 -Blackpoint D2 - Rev.0E DD30092021"
1-3282,SI20UBZ2-65,"(MS3) CONCRETE STRUCTURE FINAL DIMENSIONS, LOADS AVAILABLE 20UBZ01",5121,"HK1003-Rev.0E-3",TT_FinMile,"55902",-,-,-,100,TK_Complete,05/06/2021,05/06/2021,05/06/2021,05/06/2021,"SI--UB-2-35 FS,SI--UB-2-36 FS","SI--UB-2-35,SI--UB-2-36","SI20UBZ2-67 FS,SI20UBZ2-66 FS,SI20UBZ2-89 FS","SI20UBZ2-67,SI20UBZ2-66,SI20UBZ2-89",44,44,44,44,10,10,10,10,16,,"HK1003 -Blackpoint D2 - Rev.0E DD30092021"
1-3283,SI20UBZ2-72,"(F) CONCRETE STRUCTURE DWGS ON SITE RELEASED FOR EXECUTION 20UBZ01",5121,"HK1003-Rev.0E-3",TT_FinMile,"55902",-,-,-,0,TK_NotStart,22/04/2022,,22/04/2022,,"SI20UBZ2-67 FS,SI20UBZ2-71 FS","SI20UBZ2-67,SI20UBZ2-71","SI20UBZ5-61 FS","SI20UBZ5-61",89,,89,,20,,20,,59,144,"HK1003 -Blackpoint D2 - Rev.0E DD30092021"
1-3284,SI20UBZ2-67,"DETAIL DESIGN CONCRETE STRUCTURE 20UBZ01",5121,"HK1003-Rev.0E-3",TT_Task,"55902",-,-,-,100,TK_Complete,03/07/2021,03/07/2021,16/08/2021,16/08/2021,"SI20UBZ2-66 FS,SI20UBZ2-65 FS","SI20UBZ2-66,SI20UBZ2-65","SI20UBZ2-68 FF,SI20UBZ2-72 FS,SI20UBZ2-69 FS","SI20UBZ2-68,SI20UBZ2-72,SI20UBZ2-69",48,48,54,54,11,11,12,12,20,,"HK1003 -Blackpoint D2 - Rev.0E DD30092021"
1-3285,SI20UBZ2-69,"CLIENT - REVIEW - DETAIL DESIGN CONCRETE - 20UBZ01",5121,"HK1003-Rev.0E-3",TT_Task,"55902",-,-,-,100,TK_Complete,17/08/2021,17/08/2021,10/09/2021,10/09/2021,"SI20UBZ2-67 FS,SI20UBZ2-68 FS,SI20UBZ2-68 FF","SI20UBZ2-67,SI20UBZ2-68,SI20UBZ2-68","SI20UBZ2-70 FS,SI20UBZ2-70 FF","SI20UBZ2-70,SI20UBZ2-70",54,54,57,57,12,12,13,13,26,,"HK1003 -Blackpoint D2 - Rev.0E DD30092021"
1-3286,SI20UBZ2-70,"BD - SUBMISSION & APPROVAL - DETAIL DESIGN CONCRETE - 20UBZ01",5121,"HK1003-Rev.0E-3",TT_Task,"55902",-,-,-,0,TK_NotStart,10/10/2021,,08/12/2021,,"SI20UBZ2-69 FS,SI20UBZ2-69 FF,SI-P221-205& FS,SI20UEY2-85 SS","SI20UBZ2-69,SI20UBZ2-69,SI-P221-205&,SI20UEY2-85","SI20UBZ2-71 FS,SI20UBZ2-71 FF,SI20UBZ2-101 FS","SI20UBZ2-71,SI20UBZ2-71,SI20UBZ2-101",62,,70,,14,,16,,33,1000,"HK1003 -Blackpoint D2 - Rev.0E DD30092021"
1-3287,SI20UBZ2-71,"BD - CONSENT LETTER - DESIGN  20UBZ01",5121,"HK1003-Rev.0E-3",TT_Task,"55902",-,-,-,0,TK_NotStart,09/12/2021,,05/01/2022,,"SI20UBZ2-70 FS,SI20UBZ2-70 FF","SI20UBZ2-70,SI20UBZ2-70","SI20UBZ2-72 FS,SI20UBZ2-102 FS","SI20UBZ2-72,SI20UBZ2-102",70,,74,,16,,17,,41,1000,"HK1003 -Blackpoint D2 - Rev.0E DD30092021"
1-3288,SI20UBZ5-68,"(RFE) FOUNDATION 20UBZ04",5121,"HK1003-Rev.0E-3",TT_FinMile,"55902",-,-,-,0,TK_NotStart,30/06/2022,,30/06/2022,,"SI20UBZ5-66 FS,SI20UBZ5-66.07 FS","SI20UBZ5-66,SI20UBZ5-66.07","SI20UBY5-49 FS,SI20UEX2-75 FS,SI20BZP7-184 FS,SI20UBN5-5.00 FS","SI20UBY5-49,SI20UEX2-75,SI20BZP7-184,SI20UBN5-5.00",99,,99,,23,,23,,72,560,"HK1003 -Blackpoint D2 - Rev.0E DD30092021"
1-3289,SI20UBZ5-66,"CONSTRUCTION FOUNDATION 20UBZ04",5121,"HK1003-Rev.0E-3",TT_Task,"55902",-,-,-,0,TK_NotStart,27/05/2022,,23/06/2022,,"SI20UBZ5-67 SS","SI20UBZ5-67","SI20UBZ5-68 FS","SI20UBZ5-68",94,,98,,22,,23,,66,616,"HK1003 -Blackpoint D2 - Rev.0E DD30092021"
1-3290,SI20UBZ5-65,"WORK PREPARATION, EXCAVATION 20UBZ04",5121,"HK1003-Rev.0E-3",TT_Task,"55902",-,-,-,0,TK_NotStart,20/05/2022,,26/05/2022,,"SI20UBZ2-80 FS,SI-----5-21& FS,SI-----5-20 FS,SI20BZP7-160 SS,SI-P222-84 FS,SI20UBZ2-99 FS","SI20UBZ2-80,SI-----5-21&,SI-----5-20,SI20BZP7-160,SI-P222-84,SI20UBZ2-99","SI20UBZ5-67 FS,SI-P222-131# FF,SI-P222-131# SS","SI20UBZ5-67,SI-P222-131#,SI-P222-131#",93,,94,,21,,22,,66,560,"HK1003 -Blackpoint D2 - Rev.0E DD30092021"
1-3291,SI20UBZ5-67,"(H) START PLACING FORMWORK 20UBZ04",5121,"HK1003-Rev.0E-3",TT_Mile,"55902",-,-,-,0,TK_NotStart,27/05/2022,,27/05/2022,,"SI20UBZ5-65 FS,SI20UBZ2-100 FS","SI20UBZ5-65,SI20UBZ2-100","SI20UBZ5-66 SS,SI20UBZ5-66.00 FS","SI20UBZ5-66,SI20UBZ5-66.00",94,,94,,22,,22,,66,560,"HK1003 -Blackpoint D2 - Rev.0E DD30092021"
1-3292,SI20UBZ2-76,"PREPARATION FOUNDATION GROUNDING DWGS 20UBZ04",5121,"HK1003-Rev.0E-3",TT_Task,"55902",-,-,-,100,TK_Complete,02/08/2021,02/08/2021,15/08/2021,15/08/2021,"SI20UBZ2-75 FF","SI20UBZ2-75","SI20UBZ2-77 FS","SI20UBZ2-77",52,52,54,54,12,12,12,12,24,,"HK1003 -Blackpoint D2 - Rev.0E DD30092021"
1-3293,SI20UBZ2-74,"BASIC BUILDING DESIGN INCL. 3D MODEL 20UBZ04",5121,"HK1003-Rev.0E-3",TT_Task,"55902",-,-,-,100,TK_Complete,11/06/2021,11/06/2021,01/07/2021,01/07/2021,"SI20UBZ2-73 FS","SI20UBZ2-73","SI20UBZ2-75 FS","SI20UBZ2-75",44,44,47,47,10,10,11,11,17,,"HK1003 -Blackpoint D2 - Rev.0E DD30092021"
1-3294,SI20UBZ2-73,"(MS3) CONCRETE STRUCTURE FINAL DIMENSIONS, LOADS AVAILABLE 20UBZ04",5121,"HK1003-Rev.0E-3",TT_FinMile,"55902",-,-,-,100,TK_Complete,10/06/2021,10/06/2021,10/06/2021,10/06/2021,"SI--UR-2-45 FS,SI--UR-2-35 FS","SI--UR-2-45,SI--UR-2-35","SI20UBZ2-75 FS,SI20UBZ2-74 FS","SI20UBZ2-75,SI20UBZ2-74",44,44,44,44,10,10,10,10,16,,"HK1003 -Blackpoint D2 - Rev.0E DD30092021"
1-3295,SI20UBZ2-80,"(F) CONCRETE STRUCTURE DWGS ON SITE RELEASED FOR EXECUTION 20UBZ04",5121,"HK1003-Rev.0E-3",TT_FinMile,"55902",-,-,-,0,TK_NotStart,19/05/2022,,19/05/2022,,"SI20UBZ2-75 FS,SI20UBZ2-79 FS","SI20UBZ2-75,SI20UBZ2-79","SI20UBZ5-65 FS","SI20UBZ5-65",93,,93,,21,,21,,65,560,"HK1003 -Blackpoint D2 - Rev.0E DD30092021"
1-3296,SI20UBZ2-75,"DETAIL DESIGN CONCRETE STRUCTURE 20UBZ04",5121,"HK1003-Rev.0E-3",TT_Task,"55902",-,-,-,100,TK_Complete,02/07/2021,02/07/2021,15/08/2021,15/08/2021,"SI20UBZ2-74 FS,SI20UBZ2-73 FS","SI20UBZ2-74,SI20UBZ2-73","SI20UBZ2-76 FF,SI20UBZ2-80 FS,SI20UBZ2-77 FS","SI20UBZ2-76,SI20UBZ2-80,SI20UBZ2-77",47,47,54,54,11,11,12,12,20,,"HK1003 -Blackpoint D2 - Rev.0E DD30092021"
1-3297,SI20UBZ2-77,"CLIENT - REVIEW - DETAIL DESIGN CONCRETE - 20UBZ04",5121,"HK1003-Rev.0E-3",TT_Task,"55902",-,-,-,100,TK_Complete,16/08/2021,16/08/2021,09/09/2021,09/09/2021,"SI20UBZ2-75 FS,SI20UBZ2-76 FS","SI20UBZ2-75,SI20UBZ2-76","SI20UBZ2-78 FS","SI20UBZ2-78",54,54,57,57,12,12,13,13,26,,"HK1003 -Blackpoint D2 - Rev.0E DD30092021"
1-3298,SI20UBZ2-78,"BD - SUBMISSION & APPROVAL - DETAIL DESIGN CONCRETE - 20UBZ04",5121,"HK1003-Rev.0E-3",TT_Task,"55902",-,-,-,0,TK_NotStart,10/10/2021,,08/12/2021,,"SI20UBZ2-77 FS,SI-P221-190& FS,SI20UBY2-67 SS","SI20UBZ2-77,SI-P221-190&,SI20UBY2-67","SI20UBZ2-79 FS,SI20UBZ2-79 FF,SI20UBZ2-99 FS","SI20UBZ2-79,SI20UBZ2-79,SI20UBZ2-99",62,,70,,14,,16,,33,1520,"HK1003 -Blackpoint D2 - Rev.0E DD30092021"
1-3299,SI20UBZ2-79,"BD - CONSENT LETTER - DESIGN  20UBZ04",5121,"HK1003-Rev.0E-3",TT_Task,"55902",-,-,-,0,TK_NotStart,09/12/2021,,19/01/2022,,"SI20UBZ2-78 FS,SI20UBZ2-78 FF","SI20UBZ2-78,SI20UBZ2-78","SI20UBZ2-80 FS,SI20UBZ2-100 FS","SI20UBZ2-80,SI20UBZ2-100",70,,76,,16,,17,,41,1520,"HK1003 -Blackpoint D2 - Rev.0E DD30092021"
1-3300,SI20UBZ5-72,"(RFE) FOUNDATION 20UBZ02",5121,"HK1003-Rev.0E-3",TT_FinMile,"55902",-,-,-,0,TK_NotStart,23/02/2022,,23/02/2022,,"SI20UBZ5-70 FS","SI20UBZ5-70","SI20UBY5-57 FS,SI20BZP7-40 FS","SI20UBY5-57,SI20BZP7-40",81,,81,,19,,19,,50,1824,"HK1003 -Blackpoint D2 - Rev.0E DD30092021"
1-3301,SI20UBZ5-70,"CONSTRUCTION FOUNDATION 20UBZ02",5121,"HK1003-Rev.0E-3",TT_Task,"55902",-,-,-,0,TK_NotStart,27/01/2022,,23/02/2022,,"SI20UBZ5-71 SS","SI20UBZ5-71","SI20UBZ5-72 FS","SI20UBZ5-72",77,,81,,18,,19,,47,1824,"HK1003 -Blackpoint D2 - Rev.0E DD30092021"
1-3302,SI20UBZ5-69,"WORK PREPARATION, EXCAVATION 20UBZ02",5121,"HK1003-Rev.0E-3",TT_Task,"55902",-,-,-,0,TK_NotStart,13/01/2022,,26/01/2022,,"SI20UBZ2-88 FS,SI-----5-21& FS,SI-----5-20 FS,SI20PAB5-105 SS,SI-P222-84 FS,SI20UBZ2-103 FS","SI20UBZ2-88,SI-----5-21&,SI-----5-20,SI20PAB5-105,SI-P222-84,SI20UBZ2-103","SI20UBZ5-71 FS,SI-P222-131# FF,SI-P222-131# SS","SI20UBZ5-71,SI-P222-131#,SI-P222-131#",75,,77,,17,,18,,45,1824,"HK1003 -Blackpoint D2 - Rev.0E DD30092021"
1-3303,SI20UBZ5-71,"(H) START PLACING FORMWORK 20UBZ02",5121,"HK1003-Rev.0E-3",TT_Mile,"55902",-,-,-,0,TK_NotStart,27/01/2022,,27/01/2022,,"SI20UBZ5-69 FS,SI20UBZ2-104 FS","SI20UBZ5-69,SI20UBZ2-104","SI20UBZ5-70 SS","SI20UBZ5-70",77,,77,,18,,18,,47,1824,"HK1003 -Blackpoint D2 - Rev.0E DD30092021"
1-3304,SI20UBZ2-84,"PREPARATION FOUNDATION GROUNDING DWGS 20UBZ02",5121,"HK1003-Rev.0E-3",TT_Task,"55902",-,-,-,100,TK_Complete,02/08/2021,02/08/2021,15/08/2021,15/08/2021,"SI20UBZ2-83 FF","SI20UBZ2-83","SI20UBZ2-85 FS,SI20UBZ2-85 FF","SI20UBZ2-85,SI20UBZ2-85",52,52,54,54,12,12,12,12,24,,"HK1003 -Blackpoint D2 - Rev.0E DD30092021"
1-3305,SI20UBZ2-81,"BASIC BUILDING DESIGN INCL. 3D MODEL 20UBZ02",5121,"HK1003-Rev.0E-3",TT_Task,"55902",-,-,-,100,TK_Complete,31/05/2021,31/05/2021,26/06/2021,26/06/2021,"SI20UBZ2-82 FS","SI20UBZ2-82","SI20UBZ2-83 FS","SI20UBZ2-83",43,43,47,47,10,10,10,10,15,,"HK1003 -Blackpoint D2 - Rev.0E DD30092021"
1-3306,SI20UBZ2-82,"(MS3) CONCRETE STRUCTURE FINAL DIMENSIONS, LOADS AVAILABLE 20UBZ02",5121,"HK1003-Rev.0E-3",TT_FinMile,"55902",-,-,-,100,TK_Complete,14/05/2021,14/05/2021,14/05/2021,14/05/2021,"SI--UB-2-35 FS","SI--UB-2-35","SI20UBZ2-83 FS,SI20UBZ2-81 FS","SI20UBZ2-83,SI20UBZ2-81",40,40,40,40,9,9,9,9,12,,"HK1003 -Blackpoint D2 - Rev.0E DD30092021"
1-3307,SI20UBZ2-88,"(F) CONCRETE STRUCTURE DWGS ON SITE RELEASED FOR EXECUTION 20UBZ02",5121,"HK1003-Rev.0E-3",TT_FinMile,"55902",-,-,-,0,TK_NotStart,12/01/2022,,12/01/2022,,"SI20UBZ2-83 FS,SI20UBZ2-87 FS","SI20UBZ2-83,SI20UBZ2-87","SI20UBZ5-69 FS","SI20UBZ5-69",75,,75,,17,,17,,45,1824,"HK1003 -Blackpoint D2 - Rev.0E DD30092021"
1-3308,SI20UBZ2-83,"DETAIL DESIGN CONCRETE STRUCTURE 20UBZ02",5121,"HK1003-Rev.0E-3",TT_Task,"55902",-,-,-,100,TK_Complete,28/06/2021,28/06/2021,15/08/2021,15/08/2021,"SI20UBZ2-81 FS,SI20UBZ2-82 FS","SI20UBZ2-81,SI20UBZ2-82","SI20UBZ2-84 FF,SI20UBZ2-88 FS,SI20UBZ2-85 FS","SI20UBZ2-84,SI20UBZ2-88,SI20UBZ2-85",47,47,54,54,11,11,12,12,19,,"HK1003 -Blackpoint D2 - Rev.0E DD30092021"
1-3309,SI20UBZ2-85,"CLIENT - REVIEW - DETAIL DESIGN CONCRETE - 20UBZ02",5121,"HK1003-Rev.0E-3",TT_Task,"55902",-,-,-,82,TK_Active,16/08/2021,16/08/2021,09/10/2021,,"SI20UBZ2-83 FS,SI20UBZ2-84 FS,SI20UBZ2-84 FF","SI20UBZ2-83,SI20UBZ2-84,SI20UBZ2-84","SI20UBZ2-86 FS,SI20UBZ2-86 FF","SI20UBZ2-86,SI20UBZ2-86",54,54,62,,12,12,14,,26,1824,"HK1003 -Blackpoint D2 - Rev.0E DD30092021"
1-3310,SI20UBZ2-86,"BD - SUBMISSION & APPROVAL - DETAIL DESIGN CONCRETE - 20UBZ02",5121,"HK1003-Rev.0E-3",TT_Task,"55902",-,-,-,0,TK_NotStart,10/10/2021,,08/12/2021,,"SI20UBZ2-85 FS,SI20UBZ2-85 FF,SI-P221-235& FS,SI--UBA2-96 SS","SI20UBZ2-85,SI20UBZ2-85,SI-P221-235&,SI--UBA2-96","SI20UBZ2-87 FS,SI20UBZ2-87 FF,SI20UTG2-78 SS,SI20UBZ2-103 FS","SI20UBZ2-87,SI20UBZ2-87,SI20UTG2-78,SI20UBZ2-103",62,,70,,14,,16,,33,1824,"HK1003 -Blackpoint D2 - Rev.0E DD30092021"
1-3311,SI20UBZ2-87,"BD - CONSENT LETTER - DESIGN  20UBZ02",5121,"HK1003-Rev.0E-3",TT_Task,"55902",-,-,-,0,TK_NotStart,09/12/2021,,05/01/2022,,"SI20UBZ2-86 FS,SI20UBZ2-86 FF","SI20UBZ2-86,SI20UBZ2-86","SI20UBZ2-88 FS,SI20UBZ2-104 FS","SI20UBZ2-88,SI20UBZ2-104",70,,74,,16,,17,,41,1824,"HK1003 -Blackpoint D2 - Rev.0E DD30092021"
1-3312,CLP20UBZ5-76,"(RFE) FOUNDATION 20UBZ03 (CLP Scope)",5121,"HK1003-Rev.0E-3",TT_FinMile,"55902",-,-,-,100,TK_Complete,01/07/2021,01/07/2021,01/07/2021,01/07/2021,"SI-----5-20 FS","SI-----5-20","SI20BZP7-105 FS,SI20BZK7B28 FS,SI20BZK7B01 FS,SI20BZP7-191 FS","SI20BZP7-105,SI20BZK7B28,SI20BZK7B01,SI20BZP7-191",47,47,47,47,11,11,11,11,20,,"HK1003 -Blackpoint D2 - Rev.0E DD30092021"
1-3313,SI20BZP7-105,"ERECTION CABLE TRAYS ON 20ULZ01",5121,"HK1003-Rev.0E-3",TT_Task,"55902",-,-,-,0,TK_NotStart,16/07/2022,,22/07/2022,,"CLP20UBZ5-76 FS,SI--BZP4B40 FS,SI20BZP7-26 FS,SI--PEE7-20 FS,SI--BZP4B40 FF,SI20BZP7-90 FS,CLP20ULZ5-82 FS","CLP20UBZ5-76,SI--BZP4B40,SI20BZP7-26,SI--PEE7-20,SI--BZP4B40,SI20BZP7-90,CLP20ULZ5-82","SI20BZP7B10# FF,SI20BZP7B10# SS,SI20BZK7B28 FS,SI20BZK7B01 FS,SI20BZP7-182 SS","SI20BZP7B10#,SI20BZP7B10#,SI20BZK7B28,SI20BZK7B01,SI20BZP7-182",102,,102,,23,,24,,74,144,"HK1003 -Blackpoint D2 - Rev.0E DD30092021"
1-3314,CLP20UEZ5-80,"(RFE) FOUNDATION 20UEZ01  (CLP Scope)",5121,"HK1003-Rev.0E-3",TT_FinMile,"55902",-,-,-,100,TK_Complete,30/06/2021,30/06/2021,30/06/2021,30/06/2021,"SI-----1-05 FS,CLP20UEZ5-82 FS","SI-----1-05,CLP20UEZ5-82","SI-----5-21& FS,SI20EKG6H16 FS,SI20BZP7-181 FS","SI-----5-21&,SI20EKG6H16,SI20BZP7-181",47,47,47,47,11,11,11,11,19,,"HK1003 -Blackpoint D2 - Rev.0E DD30092021"
1-3315,CLP20ULZ5-82,"(RFE) FOUNDATION 20ULZ01 (CLP Scope)",5121,"HK1003-Rev.0E-3",TT_FinMile,"55902",-,-,-,100,TK_Complete,01/07/2021,01/07/2021,01/07/2021,01/07/2021,"SI-----5-20 FS","SI-----5-20","SI20UBY5-06 FS,SI20ULD6B15 FS,SI20BZP7-105 FS","SI20UBY5-06,SI20ULD6B15,SI20BZP7-105",47,47,47,47,11,11,11,11,20,,"HK1003 -Blackpoint D2 - Rev.0E DD30092021"
1-3316,SI20EK-6-41,"TEMPORARY PLACEMENT OF CRANE ON 20UEN FOR INSTALLATION WORKS ON 20UEN",5121,"HK1003-Rev.0E-3",TT_Task,"55902",-,-,-,0,TK_NotStart,08/04/2022,,17/12/2022,,"SI20UEN5-45 FS","SI20UEN5-45","SI20EK-6-15 FS,SI20UEN3-13 FS,SI20UMY6M15 SS,SI20UMY6M18 SS,SI20UMY6M17 SS,SI20UMY6M16 SS,SI20UEY6-80 SS,SI20UEY6-65 SS,SI20UEY6-60 SS,SI20UEY6-15 SS,SI20UEY6-70 SS,SI20UEY6-50 SS,SI20UEY6-55 SS,SI20UEN3-12 FS","SI20EK-6-15,SI20UEN3-13,SI20UMY6M15,SI20UMY6M18,SI20UMY6M17,SI20UMY6M16,SI20UEY6-80,SI20UEY6-65,SI20UEY6-60,SI20UEY6-15,SI20UEY6-70,SI20UEY6-50,SI20UEY6-55,SI20UEN3-12",87,,124,,20,,28,,57,16,"HK1003 -Blackpoint D2 - Rev.0E DD30092021"
1-3317,SI20UQY2-92,"PREPARATION FOUNDATION GROUNDING DWGS 20UQY02",5121,"HK1003-Rev.0E-3",TT_Task,"55902",-,-,-,29,TK_Active,26/09/2021,26/09/2021,09/10/2021,,"SI20UQY2-91 FF","SI20UQY2-91","SI20UQY2-93 FS","SI20UQY2-93",60,60,62,,14,14,14,,30,1200,"HK1003 -Blackpoint D2 - Rev.0E DD30092021"
1-3318,SI20UQY2-90,"BASIC BUILDING DESIGN INCL. 3D MODEL 20UQY02",5121,"HK1003-Rev.0E-3",TT_Task,"55902",-,-,-,100,TK_Complete,11/06/2021,11/06/2021,01/07/2021,01/07/2021,"SI20UQY2-89 FF,SI20UQY2-89 FS","SI20UQY2-89,SI20UQY2-89","SI20UQY2-91 FS","SI20UQY2-91",44,44,47,47,10,10,11,11,17,,"HK1003 -Blackpoint D2 - Rev.0E DD30092021"
1-3319,SI20UQY5-151,"(H) START PLACING FORMWORK PIPE / CABLE TRENCH 20UQY02",5121,"HK1003-Rev.0E-3",TT_Mile,"55902",-,-,-,0,TK_NotStart,12/02/2022,,12/02/2022,,"SI20UQY5-150 FS,SI20UQY2-108 FS","SI20UQY5-150,SI20UQY2-108","SI20UQY5-152 FS","SI20UQY5-152",80,,80,,18,,18,,49,2464,"HK1003 -Blackpoint D2 - Rev.0E DD30092021"
1-3320,SI20UQY5-152,"CONSTRUCTION FOUNDATION PIPE / CABLE TRENCH 20UQY02",5121,"HK1003-Rev.0E-3",TT_Task,"55902",-,-,-,0,TK_NotStart,12/02/2022,,04/03/2022,,"SI20UQY5-151 FS","SI20UQY5-151","SI20UQY5-153 FS","SI20UQY5-153",80,,82,,18,,19,,49,2464,"HK1003 -Blackpoint D2 - Rev.0E DD30092021"
1-3321,SI20UQY5-153,"(RFE) FOUNDATION PIPE / CABLE TRENCH 20UQY02",5121,"HK1003-Rev.0E-3",TT_FinMile,"55902",-,-,-,0,TK_NotStart,04/03/2022,,04/03/2022,,"SI20UQY5-152 FS","SI20UQY5-152","SI20BZP7-65 FS,SI20PAR6A15 FS,SI20UQ5-1# FF","SI20BZP7-65,SI20PAR6A15,SI20UQ5-1#",82,,82,,19,,19,,52,2464,"HK1003 -Blackpoint D2 - Rev.0E DD30092021"
1-3322,SI20UQY2-89,"(MS3) CONCRETE STRUCTURE FINAL DIMENSIONS, LOADS AVAILABLE 20UQY02",5121,"HK1003-Rev.0E-3",TT_FinMile,"55902",-,-,-,100,TK_Complete,10/06/2021,10/06/2021,10/06/2021,10/06/2021,"SI20UQY2-81 FS","SI20UQY2-81","SI20UQY2-90 FF,SI20UQY2-91 FS,SI20UQY2-90 FS","SI20UQY2-90,SI20UQY2-91,SI20UQY2-90",44,44,44,44,10,10,10,10,16,,"HK1003 -Blackpoint D2 - Rev.0E DD30092021"
1-3323,SI20UQY5-150,"WORK PREPARATION, EXCAVATION PIPE / CABLE TRENCH 20UQY02 (TO BE ALIGNED WITH CLP)",5121,"HK1003-Rev.0E-3",TT_Task,"55902",-,-,-,0,TK_NotStart,29/01/2022,,11/02/2022,,"SI20UQY2-96 FS,SI-----5-21& FS,SI-----5-20 FS,SI-P222-84 FS,SI20UQY2-107 FS,SI20UQZ5-154 FS","SI20UQY2-96,SI-----5-21&,SI-----5-20,SI-P222-84,SI20UQY2-107,SI20UQZ5-154","SI20UQY5-151 FS,SI20UQY5-154 SS,SI20UQ5-1# SS,SI-P222-131# FF,SI-P222-131# SS","SI20UQY5-151,SI20UQY5-154,SI20UQ5-1#,SI-P222-131#,SI-P222-131#",78,,79,,18,,18,,47,2216,"HK1003 -Blackpoint D2 - Rev.0E DD30092021"
1-3324,SI20UQY2-96,"(F) CONCRETE STRUCTURE DWGS ON SITE RELEASED FOR EXECUTION 20UQY02",5121,"HK1003-Rev.0E-3",TT_FinMile,"55902",-,-,-,0,TK_NotStart,28/01/2022,,28/01/2022,,"SI20UQY2-91 FS,SI20UQY2-95 FS","SI20UQY2-91,SI20UQY2-95","SI20UQY5-150 FS","SI20UQY5-150",77,,77,,18,,18,,47,2216,"HK1003 -Blackpoint D2 - Rev.0E DD30092021"
1-3325,SI20UQY2-91,"DETAIL DESIGN CONCRETE STRUCTURE 20UQY02",5121,"HK1003-Rev.0E-3",TT_Task,"55902",-,-,-,90,TK_Active,02/07/2021,02/07/2021,09/10/2021,,"SI20UQY2-90 FS,SI20UQY2-89 FS","SI20UQY2-90,SI20UQY2-89","SI20UQY2-92 FF,SI20UQY2-96 FS,SI20UQY2-93 FS","SI20UQY2-92,SI20UQY2-96,SI20UQY2-93",47,47,62,,11,11,14,,20,1200,"HK1003 -Blackpoint D2 - Rev.0E DD30092021"
1-3326,SI20UQY2-93,"CLIENT - REVIEW - DETAIL DESIGN CONCRETE - 20UQY02",5121,"HK1003-Rev.0E-3",TT_Task,"55902",-,-,-,0,TK_NotStart,10/10/2021,,03/11/2021,,"SI20UQY2-91 FS,SI20UQY2-92 FS","SI20UQY2-91,SI20UQY2-92","SI20UQY2-94 SS","SI20UQY2-94",62,,65,,14,,15,,33,1200,"HK1003 -Blackpoint D2 - Rev.0E DD30092021"
1-3327,SI20UQY2-94,"BD - SUBMISSION & APPROVAL - DETAIL DESIGN CONCRETE - 20UQY02",5121,"HK1003-Rev.0E-3",TT_Task,"55902",-,-,-,0,TK_NotStart,10/10/2021,,08/12/2021,,"SI20UQY2-93 SS,SI20UQY2-86 SS,SI-P221-350& FS,SI--UBA2-96 SS","SI20UQY2-93,SI20UQY2-86,SI-P221-350&,SI--UBA2-96","SI20UQY2-95 FS,SI20UQY2-95 FF,SI20UQY2-102 SS,SI20UQY2-107 FS","SI20UQY2-95,SI20UQY2-95,SI20UQY2-102,SI20UQY2-107",62,,70,,14,,16,,33,1200,"HK1003 -Blackpoint D2 - Rev.0E DD30092021"
1-3328,SI20UQY2-95,"BD - CONSENT LETTER - DESIGN  20UQY02",5121,"HK1003-Rev.0E-3",TT_Task,"55902",-,-,-,0,TK_NotStart,09/12/2021,,05/01/2022,,"SI20UQY2-94 FS,SI20UQY2-94 FF","SI20UQY2-94,SI20UQY2-94","SI20UQY2-96 FS,SI20UQY2-108 FS","SI20UQY2-96,SI20UQY2-108",70,,74,,16,,17,,41,2400,"HK1003 -Blackpoint D2 - Rev.0E DD30092021"
1-3329,SI20UQY2-100,"PREPARATION FOUNDATION GROUNDING DWGS 20UQY03",5121,"HK1003-Rev.0E-3",TT_Task,"55902",-,-,-,29,TK_Active,26/09/2021,26/09/2021,09/10/2021,,"SI20UQY2-99 FF","SI20UQY2-99","SI20UQY2-101 FS","SI20UQY2-101",60,60,62,,14,14,14,,30,1200,"HK1003 -Blackpoint D2 - Rev.0E DD30092021"
1-3330,SI20UQY2-98,"BASIC BUILDING DESIGN INCL. 3D MODEL 20UQY03",5121,"HK1003-Rev.0E-3",TT_Task,"55902",-,-,-,100,TK_Complete,11/06/2021,11/06/2021,01/07/2021,01/07/2021,"SI20UQY2-97 FF,SI20UQY2-97 FS","SI20UQY2-97,SI20UQY2-97","SI20UQY2-99 FS","SI20UQY2-99",44,44,47,47,10,10,11,11,17,,"HK1003 -Blackpoint D2 - Rev.0E DD30092021"
1-3331,SI20UQY5-155,"(H) START PLACING FORMWORK PIPE / CABLE TRENCH 20UQY03",5121,"HK1003-Rev.0E-3",TT_Mile,"55902",-,-,-,0,TK_NotStart,19/02/2022,,19/02/2022,,"SI20UQY5-154 FS","SI20UQY5-154","SI20UQY5-156 FS","SI20UQY5-156",81,,81,,18,,18,,50,2216,"HK1003 -Blackpoint D2 - Rev.0E DD30092021"
1-3332,SI20UQY5-156,"CONSTRUCTION FOUNDATION PIPE / CABLE TRENCH 20UQY03",5121,"HK1003-Rev.0E-3",TT_Task,"55902",-,-,-,0,TK_NotStart,19/02/2022,,18/03/2022,,"SI20UQY5-155 FS","SI20UQY5-155","SI20UQY5-157 FS","SI20UQY5-157",81,,84,,18,,19,,50,2216,"HK1003 -Blackpoint D2 - Rev.0E DD30092021"
1-3333,SI20UQY5-157,"(RFE) FOUNDATION PIPE / CABLE TRENCH 20UQY03",5121,"HK1003-Rev.0E-3",TT_FinMile,"55902",-,-,-,0,TK_NotStart,18/03/2022,,18/03/2022,,"SI20UQY5-156 FS","SI20UQY5-156","SI20BZP7-70 FS,SI20PAR6A15 FS,SI20UQ5-1# FF","SI20BZP7-70,SI20PAR6A15,SI20UQ5-1#",84,,84,,19,,19,,53,2216,"HK1003 -Blackpoint D2 - Rev.0E DD30092021"
1-3334,SI20UQY2-97,"(MS3) CONCRETE STRUCTURE FINAL DIMENSIONS, LOADS AVAILABLE 20UQY03",5121,"HK1003-Rev.0E-3",TT_FinMile,"55902",-,-,-,100,TK_Complete,10/06/2021,10/06/2021,10/06/2021,10/06/2021,"SI20UQY2-81 FS","SI20UQY2-81","SI20UQY2-98 FF,SI20UQY2-99 FS,SI20UQY2-98 FS","SI20UQY2-98,SI20UQY2-99,SI20UQY2-98",44,44,44,44,10,10,10,10,16,,"HK1003 -Blackpoint D2 - Rev.0E DD30092021"
1-3335,SI20UQY5-154,"WORK PREPARATION, EXCAVATION PIPE / CABLE TRENCH 20UQY03 (TO BE ALIGNED WITH CLP)",5121,"HK1003-Rev.0E-3",TT_Task,"55902",-,-,-,0,TK_NotStart,05/02/2022,,18/02/2022,,"SI20UQY2-104 FS,SI20UQY5-150 SS,SI-----5-21& FS,SI-----5-20 FS,SI-P222-84 FS,SI20UQY2-109 FS","SI20UQY2-104,SI20UQY5-150,SI-----5-21&,SI-----5-20,SI-P222-84,SI20UQY2-109","SI20UQY5-155 FS,SI20UQ5-1# SS,SI-P222-131# FF,SI-P222-131# SS","SI20UQY5-155,SI20UQ5-1#,SI-P222-131#,SI-P222-131#",79,,80,,18,,18,,48,2216,"HK1003 -Blackpoint D2 - Rev.0E DD30092021"
1-3336,SI20UQY2-104,"(F) CONCRETE STRUCTURE DWGS ON SITE RELEASED FOR EXECUTION 20UQY03",5121,"HK1003-Rev.0E-3",TT_FinMile,"55902",-,-,-,0,TK_NotStart,04/02/2022,,04/02/2022,,"SI20UQY2-99 FS,SI20UQY2-103 FS","SI20UQY2-99,SI20UQY2-103","SI20UQY5-154 FS","SI20UQY5-154",78,,78,,18,,18,,48,2216,"HK1003 -Blackpoint D2 - Rev.0E DD30092021"
1-3337,SI20UQY2-99,"DETAIL DESIGN CONCRETE STRUCTURE 20UQY03",5121,"HK1003-Rev.0E-3",TT_Task,"55902",-,-,-,90,TK_Active,02/07/2021,02/07/2021,09/10/2021,,"SI20UQY2-98 FS,SI20UQY2-97 FS","SI20UQY2-98,SI20UQY2-97","SI20UQY2-100 FF,SI20UQY2-104 FS,SI20UQY2-101 FS","SI20UQY2-100,SI20UQY2-104,SI20UQY2-101",47,47,62,,11,11,14,,20,1200,"HK1003 -Blackpoint D2 - Rev.0E DD30092021"
1-3338,SI20UQY2-101,"CLIENT - REVIEW - DETAIL DESIGN CONCRETE - 20UQY03",5121,"HK1003-Rev.0E-3",TT_Task,"55902",-,-,-,0,TK_NotStart,10/10/2021,,03/11/2021,,"SI20UQY2-99 FS,SI20UQY2-100 FS","SI20UQY2-99,SI20UQY2-100","SI20UQY2-102 SS","SI20UQY2-102",62,,65,,14,,15,,33,1200,"HK1003 -Blackpoint D2 - Rev.0E DD30092021"
1-3339,SI20UQY2-102,"BD - SUBMISSION & APPROVAL - DETAIL DESIGN CONCRETE - 20UQY03",5121,"HK1003-Rev.0E-3",TT_Task,"55902",-,-,-,0,TK_NotStart,10/10/2021,,08/12/2021,,"SI20UQY2-101 SS,SI20UQY2-94 SS,SI-P221-355& FS,SI--UBA2-96 SS","SI20UQY2-101,SI20UQY2-94,SI-P221-355&,SI--UBA2-96","SI20UQY2-103 FS,SI20UQY2-103 FF,SI20UQZ2-98 SS,SI20UQY2-109 FS","SI20UQY2-103,SI20UQY2-103,SI20UQZ2-98,SI20UQY2-109",62,,70,,14,,16,,33,1200,"HK1003 -Blackpoint D2 - Rev.0E DD30092021"
1-3340,SI20UQY2-103,"BD - CONSENT LETTER - DESIGN  20UQY03",5121,"HK1003-Rev.0E-3",TT_Task,"55902",-,-,-,0,TK_NotStart,09/12/2021,,05/01/2022,,"SI20UQY2-102 FS,SI20UQY2-102 FF","SI20UQY2-102,SI20UQY2-102","SI20UQY2-104 FS","SI20UQY2-104",70,,74,,16,,17,,41,2456,"HK1003 -Blackpoint D2 - Rev.0E DD30092021"
1-3341,SI20BZP7-65,"ERECTION CABLE TRAYS ON 20UQY02",5121,"HK1003-Rev.0E-3",TT_Task,"55902",-,-,-,0,TK_NotStart,03/06/2022,,09/06/2022,,"SI20UQY5-153 FS,SI--BZP4B40 FS,SI20BZP7-26 FS,SI--PEE7-20 FS","SI20UQY5-153,SI--BZP4B40,SI20BZP7-26,SI--PEE7-20","SI20PA6-1# SS,SI20PA6-1# FF,SI20PAR7A16 FS,SI20BZP7B10# FF,SI20BZP7B10# SS,SI20BZK7B47 FS","SI20PA6-1#,SI20PA6-1#,SI20PAR7A16,SI20BZP7B10#,SI20BZP7B10#,SI20BZK7B47",95,,96,,22,,22,,68,2464,"HK1003 -Blackpoint D2 - Rev.0E DD30092021"
1-3342,SI20BZP7-70,"ERECTION CABLE TRAYS ON 20UQY03",5121,"HK1003-Rev.0E-3",TT_Task,"55902",-,-,-,0,TK_NotStart,17/06/2022,,30/06/2022,,"SI20UQY5-157 FS,SI--BZP4B40 FS,SI20BZP7-26 FS,SI--PEE7-20 FS","SI20UQY5-157,SI--BZP4B40,SI20BZP7-26,SI--PEE7-20","SI20PA6-1# SS,SI20PA6-1# FF,SI20PAR7A16 FS,SI20BZP7B10# FF,SI20BZP7B10# SS,SI20BZP7-192 FS,SI20BZK7B47 FS","SI20PA6-1#,SI20PA6-1#,SI20PAR7A16,SI20BZP7B10#,SI20BZP7B10#,SI20BZP7-192,SI20BZK7B47",97,,99,,22,,23,,70,2216,"HK1003 -Blackpoint D2 - Rev.0E DD30092021"
1-3343,SI20SGC6J16,"ERECTION SPRAY DELUGE SYSTEM UNDER ELECTRICAL MODULES 20UBA8110/20 20SGC",5121,"HK1003-Rev.0E-3",TT_Task,"55902",-,-,-,0,TK_NotStart,12/12/2022,,25/12/2022,,"SI--SG-2-05 FS,SI20UBA7-16 FS,SI20SG-4-41 FS,SI-P222-65 FS,SI20UBA7-105 SS","SI--SG-2-05,SI20UBA7-16,SI20SG-4-41,SI-P222-65,SI20UBA7-105","SI20SGC8-26 FS,SI20B--8-50 FS,SI-P222-133 FS,SI-P222-173 FF,SI-P222-135 FS","SI20SGC8-26,SI20B--8-50,SI-P222-133,SI-P222-173,SI-P222-135",123,,125,,28,,29,,87,208,"HK1003 -Blackpoint D2 - Rev.0E DD30092021"
1-3344,SI20SGC8-26,"COLD COMMISSIONING SPRAY DELUGE SYSTEM UNDER ELECTRICAL MODULES 20UBA8110/20 20SGC",5121,"HK1003-Rev.0E-3",TT_Task,"55902",-,-,-,0,TK_NotStart,29/03/2023,,04/04/2023,,"SI20SGC6J16 FS,SI-PM-40 FS,SI20B--8-52 FS","SI20SGC6J16,SI-PM-40,SI20B--8-52","SI20B--8-50 FS,SI20UBA8G26 FS","SI20B--8-50,SI20UBA8G26",138,,139,,32,,32,,93,64,"HK1003 -Blackpoint D2 - Rev.0E DD30092021"
1-3345,SI20SGJ6-16,"ERECTION FF INERTGAS SYSTEM IN 20UBA1110/20 SGM",5121,"HK1003-Rev.0E-3",TT_Task,"55902",-,-,-,0,TK_NotStart,01/12/2022,,14/12/2022,,"SI20UBA7L15 FS,SI20SG-4-41 FS,SI-P222-65 FS","SI20UBA7L15,SI20SG-4-41,SI-P222-65","SI20SGJ8-29 FS,SI-P222-133 FS,SI-P222-173 FF,SI-P222-135 FS","SI20SGJ8-29,SI-P222-133,SI-P222-173,SI-P222-135",121,,123,,28,,28,,86,296,"HK1003 -Blackpoint D2 - Rev.0E DD30092021"
1-3346,SI20SGY7A16,"ERECTION FIRE DETECTION SYSTEM IN 20UBA1110/20 SGY",5121,"HK1003-Rev.0E-3",TT_Task,"55902",-,-,-,0,TK_NotStart,27/02/2023,,12/03/2023,,"SI20UBA7L15 FS,SI20SGY4A40 FS,SI20BZK7-180 FS,SI-P222-65 FS","SI20UBA7L15,SI20SGY4A40,SI20BZK7-180,SI-P222-65","SI20UBA8-60 FS","SI20UBA8-60",134,,136,,31,,31,,92,288,"HK1003 -Blackpoint D2 - Rev.0E DD30092021"
1-3347,SI20SGC6J17,"ERECTION SPRAY DELUGE SYSTEM UNDER ELECTRICAL MODULES 20UBA1110/20",5121,"HK1003-Rev.0E-3",TT_Task,"55902",-,-,-,0,TK_NotStart,01/12/2022,,14/12/2022,,"SI20UBA7L15 FS,SI20SG-4-41 FS,SI-P222-65 FS","SI20UBA7L15,SI20SG-4-41,SI-P222-65","SI20SGC8-27 FS,SI-P222-133 FS,SI-P222-173 FF,SI-P222-135 FS","SI20SGC8-27,SI-P222-133,SI-P222-173,SI-P222-135",121,,123,,28,,28,,86,216,"HK1003 -Blackpoint D2 - Rev.0E DD30092021"
1-3348,SI20SGJ8-30,"COLD COMMISSIONING FF INERTGAS SYSTEM IN 20UBA1110/20 SGM INSIDE CONTAINERS",5121,"HK1003-Rev.0E-3",TT_Task,"55902",-,-,-,0,TK_NotStart,11/04/2023,,17/04/2023,,"SI20SGJ8-29 FS,SI-PM-40 FS,SI20B--8-50 FS","SI20SGJ8-29,SI-PM-40,SI20B--8-50","SI20B--8-51 SS","SI20B--8-51",140,,141,,32,,32,,94,56,"HK1003 -Blackpoint D2 - Rev.0E DD30092021"
1-3349,SI20SGJ8-29,"(TOP-20SGM-01) FF INERTGAS SYSTEM IN 20UBA1110/20 SGM INSIDE CONTAINERS",5121,"HK1003-Rev.0E-3",TT_FinMile,"55902",-,-,-,0,TK_NotStart,03/04/2023,,03/04/2023,,"SI20SGJ6-16 FS","SI20SGJ6-16","SI20SGJ8-30 FS","SI20SGJ8-30",139,,139,,32,,32,,94,56,"HK1003 -Blackpoint D2 - Rev.0E DD30092021"
1-3350,SI20SGC8-27,"COLD COMMISSIONING SPRAY DELUGE SYSTEM UNDER ELECTRICAL MODULES 20UBA1110/20",5121,"HK1003-Rev.0E-3",TT_Task,"55902",-,-,-,0,TK_NotStart,04/04/2023,,10/04/2023,,"SI20SGC6J17 FS,SI-PM-40 FS","SI20SGC6J17,SI-PM-40","SI20MB-9-15 FS,SI20B--8-51 SS,SI20B--8-50 FS","SI20MB-9-15,SI20B--8-51,SI20B--8-50",139,,140,,32,,32,,94,16,"HK1003 -Blackpoint D2 - Rev.0E DD30092021"
1-3351,SI20SGM6-17,"ERECTION FF INERTGAS SYSTEM IN 01UBA9010/20 SGM",5121,"HK1003-Rev.0E-3",TT_Task,"55902",-,-,-,0,TK_NotStart,08/10/2022,,21/10/2022,,"SI20UBA7C-15 FS,SI20SG-4-41 FS,SI20UBA7C-32 FS,SI-P222-65 FS","SI20UBA7C-15,SI20SG-4-41,SI20UBA7C-32,SI-P222-65","SI20SGM8-31 FS,SI-P222-133 FS,SI-P222-173 FS,SI-P222-135 FS","SI20SGM8-31,SI-P222-133,SI-P222-173,SI-P222-135",114,,115,,26,,27,,83,392,"HK1003 -Blackpoint D2 - Rev.0E DD30092021"
1-3352,SI20SGY7A17,"ERECTION FIRE DETECTION SYSTEM IN 01UBA9010/20 SGY",5121,"HK1003-Rev.0E-3",TT_Task,"55902",-,-,-,0,TK_NotStart,08/10/2022,,21/10/2022,,"SI20UBA7C-15 FS,SI20SGY4A40 FS,SI20UBA7C-32 FS,SI-P222-65 FS","SI20UBA7C-15,SI20SGY4A40,SI20UBA7C-32,SI-P222-65","SI20UBA7C-20 FS,SI-P222-67 FS","SI20UBA7C-20,SI-P222-67",114,,115,,26,,27,,83,1152,"HK1003 -Blackpoint D2 - Rev.0E DD30092021"
1-3353,SI20SGC6J18,"ERECTION SPRAY DELUGE SYSTEM UNDER ELECTRICAL MODULES 01UBA9010/20 20SGC",5121,"HK1003-Rev.0E-3",TT_Task,"55902",-,-,-,0,TK_NotStart,22/07/2022,,04/08/2022,,"SI20UBA7C-15 FS,SI20SG-4-41 FS,SI-P222-65 FS","SI20UBA7C-15,SI20SG-4-41,SI-P222-65","SI20SGC8-28 FS,SI20B--8-50 FS,SI-P222-133 FS,SI-P222-173 FF,SI-P222-135 FS","SI20SGC8-28,SI20B--8-50,SI-P222-133,SI-P222-173,SI-P222-135",102,,104,,24,,24,,74,1296,"HK1003 -Blackpoint D2 - Rev.0E DD30092021"
1-3354,SI20SGM8-32,"COLD COMMISSIONING FF INERTGAS SYSTEM IN 01UBA9010/20 SGM INSIDE CONTAINERS",5121,"HK1003-Rev.0E-3",TT_Task,"55902",-,-,-,0,TK_NotStart,07/02/2023,,13/02/2023,,"SI20SGM8-31 FS,SI-PM-40 FS","SI20SGM8-31,SI-PM-40","SI20UBA7C-25 SS","SI20UBA7C-25",131,,132,,30,,30,,89,288,"HK1003 -Blackpoint D2 - Rev.0E DD30092021"
1-3355,SI20SGM8-31,"(TOP-20SGM-05) FF INERTGAS SYSTEM IN 01UBA9010/20 SGM INSIDE CONTAINERS",5121,"HK1003-Rev.0E-3",TT_FinMile,"55902",-,-,-,0,TK_NotStart,06/02/2023,,06/02/2023,,"SI20SGM6-17 FS","SI20SGM6-17","SI20SGM8-32 FS","SI20SGM8-32",131,,131,,30,,30,,89,288,"HK1003 -Blackpoint D2 - Rev.0E DD30092021"
1-3356,SI20SGC8-28,"COLD COMMISSIONING SPRAY DELUGE SYSTEM UNDER ELECTRICAL MODULES 01UBA9010/20 20SGC",5121,"HK1003-Rev.0E-3",TT_Task,"55902",-,-,-,0,TK_NotStart,07/02/2023,,13/02/2023,,"SI20SGC6J18 FS,SI-PM-40 FS","SI20SGC6J18,SI-PM-40","SI20UBA7C-25 SS","SI20UBA7C-25",131,,132,,30,,30,,89,288,"HK1003 -Blackpoint D2 - Rev.0E DD30092021"
1-3357,SI20UBA4C-6,"(OTD-OS) ON SITE ELECTRICAL MODULES 20UBA1110/20",5121,"HK1003-Rev.0E-3",TT_FinMile,"55902",-,-,-,0,TK_NotStart,17/11/2022,,17/11/2022,,"SI20UBA4G55 FS","SI20UBA4G55","SI20UBA7C-31 FS","SI20UBA7C-31",119,,119,,27,,27,,85,216,"HK1003 -Blackpoint D2 - Rev.0E DD30092021"
1-3358,SI20UBA7C-31,"PLACING ELECTRICAL MODULES 20UBA1110/20",5121,"HK1003-Rev.0E-3",TT_Task,"55902",-,-,-,0,TK_NotStart,18/11/2022,,20/11/2022,,"SI20UBA4C-6 FS,SI20UBA5-82 FS,SI20BZP7-60 FS,SI20HB-6C23 FS,SI--UBA2K05 FS","SI20UBA4C-6,SI20UBA5-82,SI20BZP7-60,SI20HB-6C23,SI--UBA2K05","SI20UBA7L15 FS,SI20UBA5-60 FS,SI20UBA5-89 FS,SI20QU-6-15 SS","SI20UBA7L15,SI20UBA5-60,SI20UBA5-89,SI20QU-6-15",119,,120,,27,,28,,85,216,"HK1003 -Blackpoint D2 - Rev.0E DD30092021"
1-3359,SI20CJT8-20,"COLD COMMISSIONING SFC CUBICLE 20CJT",5121,"HK1003-Rev.0E-3",TT_Task,"55902",-,-,-,0,TK_NotStart,29/03/2023,,11/04/2023,,"SI20BFA8-25 FS,SI-PM-40 FS,SI20CHA8-25 FS,SI20B--8-52 FS","SI20BFA8-25,SI-PM-40,SI20CHA8-25,SI20B--8-52","SI20MKC8-76 FS,SI20MKC8-77 FS,SI20M--8-66 FS","SI20MKC8-76,SI20MKC8-77,SI20M--8-66",138,,140,,32,,32,,93,304,"HK1003 -Blackpoint D2 - Rev.0E DD30092021"
1-3360,SI20CJT8A20,"COLD COMMISSIONING SEE CUBICLE 20CJT",5121,"HK1003-Rev.0E-3",TT_Task,"55902",-,-,-,0,TK_NotStart,14/03/2023,,27/03/2023,,"SI-PM-40 FS,SI20UBA8G25 SS","SI-PM-40,SI20UBA8G25","SI20M--8-25 SS,SI20B--8-50 FS","SI20M--8-25,SI20B--8-50",136,,138,,31,,32,,92,128,"HK1003 -Blackpoint D2 - Rev.0E DD30092021"
1-3361,SI20SGM6-20,"ERECTION FF INERTGAS SYSTEM IN 20UBA7910/20 SGM",5121,"HK1003-Rev.0E-3",TT_Task,"55902",-,-,-,0,TK_NotStart,05/09/2022,,18/09/2022,,"SI20UBA7-15 FS,SI20SG-4-41 FS,SI20UBA7-25 FS,SI-P222-65 FS","SI20UBA7-15,SI20SG-4-41,SI20UBA7-25,SI-P222-65","SI20SGM8-35 FS,SI-P222-133 FS,SI-P222-173 FS,SI-P222-135 FS","SI20SGM8-35,SI-P222-133,SI-P222-173,SI-P222-135",109,,111,,25,,25,,80,656,"HK1003 -Blackpoint D2 - Rev.0E DD30092021"
1-3362,SI20SGC6J20,"ERECTION SPRAY DELUGE SYSTEM UNDER ELECTRICAL MODULES 20UBA7910/20 20SGC",5121,"HK1003-Rev.0E-3",TT_Task,"55902",-,-,-,0,TK_NotStart,05/09/2022,,18/09/2022,,"SI20UBA7-15 FS,SI20SG-4-41 FS,SI20UBA7-25 FS,SI-P222-65 FS","SI20UBA7-15,SI20SG-4-41,SI20UBA7-25,SI-P222-65","SI20SGC8-30 FS,SI20B--8-50 FS,SI-P222-66 FS,SI-P222-133 FS,SI-P222-173 FS,SI-P222-135 FS","SI20SGC8-30,SI20B--8-50,SI-P222-66,SI-P222-133,SI-P222-173,SI-P222-135",109,,111,,25,,25,,80,656,"HK1003 -Blackpoint D2 - Rev.0E DD30092021"
1-3363,SI20SGM8-40,"COLD COMMISSIONING FF INERTGAS SYSTEM IN 20UBA7910/20 SGM INSIDE CONTAINERS",5121,"HK1003-Rev.0E-3",TT_Task,"55902",-,-,-,0,TK_NotStart,21/02/2023,,27/02/2023,,"SI20SGM8-35 FS,SI-PM-40 FS,SI20BUK8-50 FS","SI20SGM8-35,SI-PM-40,SI20BUK8-50","SI20UBA8G25 SS","SI20UBA8G25",133,,134,,31,,31,,91,296,"HK1003 -Blackpoint D2 - Rev.0E DD30092021"
1-3364,SI20SGM8-35,"(TOP-20SGM-06) FF INERTGAS SYSTEM IN 20UBA7910/20 SGM INSIDE CONTAINERS",5121,"HK1003-Rev.0E-3",TT_FinMile,"55902",-,-,-,0,TK_NotStart,20/02/2023,,20/02/2023,,"SI20SGM6-20 FS","SI20SGM6-20","SI20SGM8-40 FS","SI20SGM8-40",133,,133,,31,,31,,91,296,"HK1003 -Blackpoint D2 - Rev.0E DD30092021"
1-3365,SI20SGC8-30,"COLD COMMISSIONING SPRAY DELUGE SYSTEM UNDER ELECTRICAL MODULES20UBA7910/20 20SGC",5121,"HK1003-Rev.0E-3",TT_Task,"55902",-,-,-,0,TK_NotStart,14/03/2023,,20/03/2023,,"SI20SGC6J20 FS,SI-PM-40 FS,SI20BUK8-50 FS","SI20SGC6J20,SI-PM-40,SI20BUK8-50","SI20UBA8G25 SS","SI20UBA8G25",136,,137,,31,,32,,92,128,"HK1003 -Blackpoint D2 - Rev.0E DD30092021"
1-3366,SI20SGC6J21,"ERECTION SPRAY DELUGE SYSTEM FOR 20BFT03/04 20SGC",5121,"HK1003-Rev.0E-3",TT_Task,"55902",-,-,-,0,TK_NotStart,13/12/2022,,26/12/2022,,"SI--BHT7-20 SS,SI20SG-4-41 FS,SI-P222-65 FS","SI--BHT7-20,SI20SG-4-41,SI-P222-65","SI20SGC8-31 FS,SI-P222-133 FS,SI-P222-173 FF,SI-P222-135 FS","SI20SGC8-31,SI-P222-133,SI-P222-173,SI-P222-135",123,,125,,28,,29,,87,200,"HK1003 -Blackpoint D2 - Rev.0E DD30092021"
1-3367,SI20SGC8-31,"COLD COMMISSIONING SPRAY DELUGE SYSTEM FOR 20BFT03/04 20SGC",5121,"HK1003-Rev.0E-3",TT_Task,"55902",-,-,-,0,TK_NotStart,11/04/2023,,17/04/2023,,"SI20SGC6J21 FS,SI-PM-40 FS,SI20B--8-52 FS,SI20B--8-50 FS","SI20SGC6J21,SI-PM-40,SI20B--8-52,SI20B--8-50","SI--BFT8-25 FS,SI--BFT8-27 FS","SI--BFT8-25,SI--BFT8-27",140,,141,,32,,32,,94,312,"HK1003 -Blackpoint D2 - Rev.0E DD30092021"
1-3368,SI20SGC6J22,"ERECTION SPRAY DELUGE SYSTEM FOR 20BFT01/02 20SGC",5121,"HK1003-Rev.0E-3",TT_Task,"55902",-,-,-,0,TK_NotStart,16/08/2022,,29/08/2022,,"SI20BFT7-15 FS,SI20SG-4-41 FS,SI-P222-65 FS","SI20BFT7-15,SI20SG-4-41,SI-P222-65","SI20SGC8-32 FS,SI-P222-133 FS,SI-P222-173 FS,SI-P222-135 FS","SI20SGC8-32,SI-P222-133,SI-P222-173,SI-P222-135",106,,108,,24,,25,,77,816,"HK1003 -Blackpoint D2 - Rev.0E DD30092021"
1-3369,SI20SGC8-32,"COLD COMMISSIONING SPRAY DELUGE SYSTEM FOR 20BFT01/02 20SGC",5121,"HK1003-Rev.0E-3",TT_Task,"55902",-,-,-,0,TK_NotStart,07/02/2023,,13/02/2023,,"SI20SGC6J22 FS,SI20SGY7A18 FS,SI-PM-40 FS","SI20SGC6J22,SI20SGY7A18,SI-PM-40","SI20BFT8-25 FS,SI20BFT8-76 FS","SI20BFT8-25,SI20BFT8-76",131,,132,,30,,30,,89,440,"HK1003 -Blackpoint D2 - Rev.0E DD30092021"
1-3370,SI20SGY7A18,"ERECTION FIRE DETECTION SYSTEM FOR 20BFT01/02 SGY",5121,"HK1003-Rev.0E-3",TT_Task,"55902",-,-,-,0,TK_NotStart,16/08/2022,,29/08/2022,,"SI20BFT7-15 FS,SI20SGY4A40 FS,SI-P222-65 FS","SI20BFT7-15,SI20SGY4A40,SI-P222-65","SI20SGC8-32 FS,SI-P222-67 FS","SI20SGC8-32,SI-P222-67",106,,108,,24,,25,,77,1728,"HK1003 -Blackpoint D2 - Rev.0E DD30092021"
1-3371,SI20SGC6J23,"ERECTION SPRAY DELUGE SYSTEM FOR 20BBT01/02 20SGC",5121,"HK1003-Rev.0E-3",TT_Task,"55902",-,-,-,0,TK_NotStart,08/09/2022,,21/09/2022,,"SI20BBT7-16 FS,SI20SG-4-41 FS,SI-P222-65 FS","SI20BBT7-16,SI20SG-4-41,SI-P222-65","SI20SGC8-10 FS,SI-P222-133 FS,SI-P222-173 FS,SI-P222-135 FS","SI20SGC8-10,SI-P222-133,SI-P222-173,SI-P222-135",109,,111,,25,,26,,80,632,"HK1003 -Blackpoint D2 - Rev.0E DD30092021"
1-3372,SI20SGY7A19,"ERECTION FIRE DETECTION SYSTEM FOR 20BAT SGY",5121,"HK1003-Rev.0E-3",TT_Task,"55902",-,-,-,0,TK_NotStart,24/09/2022,,07/10/2022,,"SI20BAT7-15 FS,SI20SGY4A40 FS,SI-P222-65 FS","SI20BAT7-15,SI20SGY4A40,SI-P222-65","SI20SGC8-10 FS,SI20SGY7A22 SS,SI-P222-67 FS","SI20SGC8-10,SI20SGY7A22,SI-P222-67",112,,113,,26,,26,,81,1304,"HK1003 -Blackpoint D2 - Rev.0E DD30092021"
1-3373,SI20SGY7A20,"ERECTION FIRE DETECTION SYSTEM FOR 20BBT SGY",5121,"HK1003-Rev.0E-3",TT_Task,"55902",-,-,-,0,TK_NotStart,08/09/2022,,21/09/2022,,"SI20BBT7-16 FS,SI20SGY4A40 FS,SI-P222-65 FS","SI20BBT7-16,SI20SGY4A40,SI-P222-65","SI20SGC8-10 FS,SI-P222-67 FS","SI20SGC8-10,SI-P222-67",109,,111,,25,,26,,80,1432,"HK1003 -Blackpoint D2 - Rev.0E DD30092021"
1-3374,SI20SGC6J24,"ERECTION SPRAY DELUGE SYSTEM FOR 20MKC02 20SGC",5121,"HK1003-Rev.0E-3",TT_Task,"55902",-,-,-,0,TK_NotStart,12/12/2022,,25/12/2022,,"SI20MBJ7-11 FS,SI20SG-4-41 FS,SI20SGC6J25 SS,SI-P222-65 FS","SI20MBJ7-11,SI20SG-4-41,SI20SGC6J25,SI-P222-65","SI20M--8-66 FS,SI-P222-133 FS,SI-P222-173 FF,SI-P222-135 FS","SI20M--8-66,SI-P222-133,SI-P222-173,SI-P222-135",123,,125,,28,,29,,87,208,"HK1003 -Blackpoint D2 - Rev.0E DD30092021"
1-3375,SI20SGY7A21,"ERECTION FIRE DETECTION SYSTEM FOR 20MKC02 SGY",5121,"HK1003-Rev.0E-3",TT_Task,"55902",-,-,-,0,TK_NotStart,01/10/2022,,14/10/2022,,"SI20MBJ7-11 FS,SI20SGY4A40 FS,SI20SGY7A22 SS,SI-P222-65 FS","SI20MBJ7-11,SI20SGY4A40,SI20SGY7A22,SI-P222-65","SI20M--8-66 FS,SI-P222-67 FS","SI20M--8-66,SI-P222-67",113,,114,,26,,26,,82,1480,"HK1003 -Blackpoint D2 - Rev.0E DD30092021"
1-3376,SI20SGC6J25,"ERECTION SPRAY DELUGE SYSTEM FOR 20MKC01/MBJ01 20SGC",5121,"HK1003-Rev.0E-3",TT_Task,"55902",-,-,-,0,TK_NotStart,12/12/2022,,25/12/2022,,"SI20MBJ7-10 FS,SI20SG-4-41 FS,SI20SGC6-15 SS,SI-P222-65 FS","SI20MBJ7-10,SI20SG-4-41,SI20SGC6-15,SI-P222-65","SI20M--8-25 FS,SI20SGC6J24 SS,SI-P222-133 FS,SI-P222-173 FF,SI-P222-135 FS","SI20M--8-25,SI20SGC6J24,SI-P222-133,SI-P222-173,SI-P222-135",123,,125,,28,,29,,87,208,"HK1003 -Blackpoint D2 - Rev.0E DD30092021"
1-3377,SI20SGY7A22,"ERECTION FIRE DETECTION SYSTEM FOR 20MKC01/20MBJ01 SGY",5121,"HK1003-Rev.0E-3",TT_Task,"55902",-,-,-,0,TK_NotStart,01/10/2022,,14/10/2022,,"SI20MBJ7-10 FS,SI20SGY4A40 FS,SI20SGY7A19 SS,SI-P222-65 FS","SI20MBJ7-10,SI20SGY4A40,SI20SGY7A19,SI-P222-65","SI20M--8-25 FS,SI20SGY7A21 SS,SI-P222-67 FS","SI20M--8-25,SI20SGY7A21,SI-P222-67",113,,114,,26,,26,,82,1384,"HK1003 -Blackpoint D2 - Rev.0E DD30092021"
1-3378,SI20SGY7A23,"ERECTION FIRE DETECTION SYSTEM IN 20XKA11 SGY",5121,"HK1003-Rev.0E-3",TT_Task,"55902",-,-,-,0,TK_NotStart,24/09/2022,,07/10/2022,,"SI20XKA7-15 FS,SI20SGY4A40 FS,SI-P222-65 FS","SI20XKA7-15,SI20SGY4A40,SI-P222-65","SI20SGM8-41 FS","SI20SGM8-41",112,,113,,26,,26,,81,1960,"HK1003 -Blackpoint D2 - Rev.0E DD30092021"
1-3379,SI20SGM6-21,"ERECTION FF INERTGAS SYSTEM IN 20XKA11 SGM",5121,"HK1003-Rev.0E-3",TT_Task,"55902",-,-,-,0,TK_NotStart,24/09/2022,,07/10/2022,,"SI20XKA7-15 FS,SI20SG-4-41 FS,SI-P222-65 FS","SI20XKA7-15,SI20SG-4-41,SI-P222-65","SI20SGM8-41 FS,SI-P222-133 FS,SI-P222-173 FS,SI-P222-135 FS","SI20SGM8-41,SI-P222-133,SI-P222-173,SI-P222-135",112,,113,,26,,26,,81,504,"HK1003 -Blackpoint D2 - Rev.0E DD30092021"
1-3380,SI20SGM8-42,"COLD COMMISSIONING FF INERTGAS SYSTEM IN 20XKA11 SGM",5121,"HK1003-Rev.0E-3",TT_Task,"55902",-,-,-,0,TK_NotStart,11/04/2023,,17/04/2023,,"SI20SGM8-41 FS,SI-PM-40 FS,SI20B--8-52 FS,SI20B--8-50 FS","SI20SGM8-41,SI-PM-40,SI20B--8-52,SI20B--8-50","SI20XKA8-25 FS","SI20XKA8-25",140,,141,,32,,32,,94,480,"HK1003 -Blackpoint D2 - Rev.0E DD30092021"
1-3381,SI20SGM8-41,"(TOP-20SGM-03) FF INERTGAS EXTINGHISHING SYSTEM UBN",5121,"HK1003-Rev.0E-3",TT_FinMile,"55902",-,-,-,0,TK_NotStart,10/04/2023,,10/04/2023,,"SI20SGM6-21 FS,SI20SGY7A23 FS","SI20SGM6-21,SI20SGY7A23","SI20SGM8-42 FS","SI20SGM8-42",140,,140,,32,,32,,94,480,"HK1003 -Blackpoint D2 - Rev.0E DD30092021"
1-3382,SI20SGY7-18,"ERECTION FIRE DETECTION SYSTEM IN 20BFT03/04 SGY",5121,"HK1003-Rev.0E-3",TT_Task,"55902",-,-,-,0,TK_NotStart,19/12/2022,,25/12/2022,,"SI--BHT7-20 FS,SI20SGY4A40 FS,SI-P222-65 FS","SI--BHT7-20,SI20SGY4A40,SI-P222-65","SI--BFT8-10 FS,SI--BFT8-26 FS","SI--BFT8-10,SI--BFT8-26",124,,125,,29,,29,,87,1216,"HK1003 -Blackpoint D2 - Rev.0E DD30092021"
1-3383,SI20SGY7-19,"ERECTION FIRE DETECTION SYSTEM IN 20UBZ02 SGY",5121,"HK1003-Rev.0E-3",TT_Task,"55902",-,-,-,0,TK_NotStart,23/06/2022,,29/06/2022,,"SI20BZP7-40 FS,SI20SGY4A40 FS,SI-P222-65 FS","SI20BZP7-40,SI20SGY4A40,SI-P222-65","SI--BFT8-10 FS,SI--BFT8-26 FS,SI-P222-67 FS","SI--BFT8-10,SI--BFT8-26,SI-P222-67",98,,99,,23,,23,,70,2336,"HK1003 -Blackpoint D2 - Rev.0E DD30092021"
1-3384,SI--BHT7-15,"PLACING LV TRANSFORMER 20BFT03/04",5121,"HK1003-Rev.0E-3",TT_Task,"55902",-,-,-,0,TK_NotStart,21/11/2022,,21/11/2022,,"SI--BHT4-40 FS,SI20UBD5-58 FS,SI20UBD5C-48 FS,SI20UBA7-27 FS","SI--BHT4-40,SI20UBD5-58,SI20UBD5C-48,SI20UBA7-27","SI--BHT7-20 FS","SI--BHT7-20",120,,120,,28,,28,,85,200,"HK1003 -Blackpoint D2 - Rev.0E DD30092021"
1-3385,SI20BZP7-40,"ERECTION CABLE TRAYS ON 20UBZ02",5121,"HK1003-Rev.0E-3",TT_Task,"55902",-,-,-,0,TK_NotStart,09/06/2022,,22/06/2022,,"SI20UBZ5-72 FS,SI--BZP4B40 FS,SI20BZP7-26 FS,SI--PEE7-20 FS","SI20UBZ5-72,SI--BZP4B40,SI20BZP7-26,SI--PEE7-20","SI20SGY7-19 FS,SI20BZP7B10# FF,SI20BZP7B10# SS","SI20SGY7-19,SI20BZP7B10#,SI20BZP7B10#",96,,98,,22,,23,,69,2336,"HK1003 -Blackpoint D2 - Rev.0E DD30092021"
1-3386,SI20SGY7A24,"ERECTION FIRE DETECTION SYSTEM IN 20UEN SGY",5121,"HK1003-Rev.0E-3",TT_Task,"55902",-,-,-,0,TK_NotStart,12/02/2023,,25/02/2023,,"SI20EK-6-15 FS,SI20SGY4A40 FS,SI-P222-65 FS","SI20EK-6-15,SI20SGY4A40,SI-P222-65","SI20EK-8H13 FS","SI20EK-8H13",132,,134,,30,,31,,90,664,"HK1003 -Blackpoint D2 - Rev.0E DD30092021"
1-3387,SI20SGY7A25,"ERECTION FIRE DETECTION SYSTEM IN 20UEX01 SGY",5121,"HK1003-Rev.0E-3",TT_Task,"55902",-,-,-,0,TK_NotStart,24/09/2022,,07/10/2022,,"SI20EGx6-65 FS,SI20SGY4A40 FS,SI-P222-65 FS","SI20EGx6-65,SI20SGY4A40,SI-P222-65","SI20XKA8-10 FS,SI-P222-153 FS","SI20XKA8-10,SI-P222-153",112,,113,,26,,26,,81,2016,"HK1003 -Blackpoint D2 - Rev.0E DD30092021"
1-3388,SI20SGC6J26,"ERECTION SPRAY DELUGE SYSTEM FOR 20UEX01 20SGC",5121,"HK1003-Rev.0E-3",TT_Task,"55902",-,-,-,0,TK_NotStart,30/10/2022,,12/11/2022,,"SI20EGx6-65 FS,SI20SG-4-41 FS,SI20UEX2-65 FS,SI-P222-65 FS","SI20EGx6-65,SI20SG-4-41,SI20UEX2-65,SI-P222-65","SI20XKA8-10 FS,SI-P222-133 FS,SI-P222-173 FF,SI-P222-135 FS","SI20XKA8-10,SI-P222-133,SI-P222-173,SI-P222-135",117,,119,,27,,27,,84,552,"HK1003 -Blackpoint D2 - Rev.0E DD30092021"
1-3389,SI20SGY7A26,"ERECTION FIRE DETECTION SYSTEM IN 20QU SGY",5121,"HK1003-Rev.0E-3",TT_Task,"55902",-,-,-,0,TK_NotStart,02/12/2022,,15/12/2022,,"SI20QU-6-15 FS,SI20SGY4A40 FS,SI-P222-65 FS","SI20QU-6-15,SI20SGY4A40,SI-P222-65","SI20QU-8-10 FS","SI20QU-8-10",121,,123,,28,,28,,86,1256,"HK1003 -Blackpoint D2 - Rev.0E DD30092021"
1-3390,SI20SGY7A27,"ERECTION FIRE DETECTION SYSTEM IN LAC ENCLOSURES SGY",5121,"HK1003-Rev.0E-3",TT_Task,"55902",-,-,-,0,TK_NotStart,27/10/2022,,09/11/2022,,"SI20LAC6M15 FS,SI20LAC6B16 FS,SI20SGY4A40 FS,SI-P222-65 FS","SI20LAC6M15,SI20LAC6B16,SI20SGY4A40,SI-P222-65","SI20SGC8-33 FS","SI20SGC8-33",116,,118,,27,,27,,84,1808,"HK1003 -Blackpoint D2 - Rev.0E DD30092021"
1-3391,SI20SGC6J27,"ERECTION SPRAY DELUGE SYSTEM IN LAC ENCLOSURES SGC",5121,"HK1003-Rev.0E-3",TT_Task,"55902",-,-,-,0,TK_NotStart,27/10/2022,,09/11/2022,,"SI20LAC6M15 FS,SI20LAC6B16 FS,SI20SG-4-41 FS,SI-P222-65 FS","SI20LAC6M15,SI20LAC6B16,SI20SG-4-41,SI-P222-65","SI20SGC8-33 FS,SI20LAC8B10 FS,SI-P222-133 FS,SI-P222-173 FS,SI-P222-135 FS","SI20SGC8-33,SI20LAC8B10,SI-P222-133,SI-P222-173,SI-P222-135",116,,118,,27,,27,,84,240,"HK1003 -Blackpoint D2 - Rev.0E DD30092021"
1-3392,SI20SGC8-33,"COLD COMMISSIONING SPRAY DELUGE SYSTEM IN LAC ENCLOSURES SGC",5121,"HK1003-Rev.0E-3",TT_Task,"55902",-,-,-,0,TK_NotStart,11/04/2023,,17/04/2023,,"SI20SGC6J27 FS,SI20SGY7A27 FS,SI-PM-40 FS,SI20B--8-50 FS","SI20SGC6J27,SI20SGY7A27,SI-PM-40,SI20B--8-50","SI20MB-9-15 FS","SI20MB-9-15",140,,141,,32,,32,,94,592,"HK1003 -Blackpoint D2 - Rev.0E DD30092021"
1-3393,SI20SGY7A28,"ERECTION FIRE DETECTION SYSTEM IN GT ENCLOSURE 20MPB SGY",5121,"HK1003-Rev.0E-3",TT_Task,"55902",-,-,-,0,TK_NotStart,26/11/2022,,09/12/2022,,"SI20MPB6E82 FS,SI20SGY4A40 FS,SI-P222-65 FS","SI20MPB6E82,SI20SGY4A40,SI-P222-65","SI20SGJ8-20 FS,SI20MB-8-25& FS","SI20SGJ8-20,SI20MB-8-25&",121,,122,,28,,28,,85,1120,"HK1003 -Blackpoint D2 - Rev.0E DD30092021"
1-3394,SI20SGY7A29,"ERECTION FIRE DETECTION SYSTEM FOR TS AUXILIARY OIL SYSTEMS / H2 SYSTEMS SGY",5121,"HK1003-Rev.0E-3",TT_Task,"55902",-,-,-,0,TK_NotStart,25/08/2022,,19/10/2022,,"SI20MAV6-15 FS,SI20SGY4A40 FS,SI-P222-65 FS","SI20MAV6-15,SI20SGY4A40,SI-P222-65","SI20MAD8-26& FS","SI20MAD8-26&",107,,115,,25,,26,,79,1416,"HK1003 -Blackpoint D2 - Rev.0E DD30092021"
1-3395,SI20SGY7A30,"ERECTION FIRE DETECTION SYSTEM FOR  FOR LCB / LDK PUMP AREA SGY",5121,"HK1003-Rev.0E-3",TT_Task,"55902",-,-,-,0,TK_NotStart,27/08/2022,,09/09/2022,,"SI20LDK6M15 FS,SI20LCB6B15 FS,SI20SGY4A40 FS,SI-P222-65 FS","SI20LDK6M15,SI20LCB6B15,SI20SGY4A40,SI-P222-65","SI20SGC8-34 FS","SI20SGC8-34",108,,109,,25,,25,,79,2296,"HK1003 -Blackpoint D2 - Rev.0E DD30092021"
1-3396,SI20SGC6J28,"ERECTION SPRAY DELUGE SYSTEM FOR LCB / LDK PUMP AREA SGC",5121,"HK1003-Rev.0E-3",TT_Task,"55902",-,-,-,0,TK_NotStart,21/10/2022,,03/11/2022,,"SI20LDK6M15 FS,SI20LCB6B15 FS,SI20LCA6A15 SS,SI20SG-4-41 FS,SI-P222-65 FS","SI20LDK6M15,SI20LCB6B15,SI20LCA6A15,SI20SG-4-41,SI-P222-65","SI20SGC8-34 FS,SI-P222-133 FS,SI-P222-173 FS,SI-P222-135 FS","SI20SGC8-34,SI-P222-133,SI-P222-173,SI-P222-135",115,,117,,27,,27,,83,288,"HK1003 -Blackpoint D2 - Rev.0E DD30092021"
1-3397,SI20SGC8-34,"COLD COMMISSIONING SPRAY DELUGE SYSTEM FOR LCB / LDK PUMP AREA SGC",5121,"HK1003-Rev.0E-3",TT_Task,"55902",-,-,-,0,TK_NotStart,11/04/2023,,17/04/2023,,"SI20SGC6J28 FS,SI20B--8-50 FS,SI20SGY7A30 FS,SI-PM-40 FS","SI20SGC6J28,SI20B--8-50,SI20SGY7A30,SI-PM-40","SI20MB-9-15 FS","SI20MB-9-15",140,,141,,32,,32,,94,592,"HK1003 -Blackpoint D2 - Rev.0E DD30092021"
1-3398,SI20SGY7A31,"ERECTION FIRE DETECTION SYSTEM IN 20UBA7910/20 SGY",5121,"HK1003-Rev.0E-3",TT_Task,"55902",-,-,-,0,TK_NotStart,05/09/2022,,18/09/2022,,"SI20SGY4A40 FS,SI20UBA7-15 FS,SI20UBA7-25 FS,SI-P222-65 FS","SI20SGY4A40,SI20UBA7-15,SI20UBA7-25,SI-P222-65","SI20UBA8-12 FS,SI-P222-67 FS","SI20UBA8-12,SI-P222-67",109,,111,,25,,25,,80,1144,"HK1003 -Blackpoint D2 - Rev.0E DD30092021"
1-3399,SI--5552-86,"PREPARE MAINTENANCE CONCEPT",5121,"HK1003-Rev.0E-3",TT_Task,"55902",-,-,-,100,TK_Complete,31/07/2021,31/07/2021,27/08/2021,27/08/2021,"SI-----1-05 FS,SI--PM-2-30 FS","SI-----1-05,SI--PM-2-30","SI--PM-2-60 FS,SI--PM-2-90 FS","SI--PM-2-60,SI--PM-2-90",52,52,55,55,12,12,13,13,24,,"HK1003 -Blackpoint D2 - Rev.0E DD30092021"
1-3400,SI20UEX2-55,"CONSTRUCTION FINISHING WORKS 20UEX01",5121,"HK1003-Rev.0E-3",TT_Task,"55902",-,-,-,0,TK_NotStart,09/10/2022,,29/10/2022,,"SI20UEX2-35 FS,SI20UEX2-100 FS,SI20UEX5B46 FS,SI20BZL7A17 SS","SI20UEX2-35,SI20UEX2-100,SI20UEX5B46,SI20BZL7A17","SI20UEX2-65 FS","SI20UEX2-65",114,,117,,26,,27,,83,552,"HK1003 -Blackpoint D2 - Rev.0E DD30092021"
1-3401,SI20UEX2-65,"(RFE) FINISHING WORKS 20UEX01",5121,"HK1003-Rev.0E-3",TT_FinMile,"55902",-,-,-,0,TK_NotStart,29/10/2022,,29/10/2022,,"SI20UEX2-55 FS,SI20BZL7A17 FS","SI20UEX2-55,SI20BZL7A17","SI20SGC6J26 FS","SI20SGC6J26",117,,117,,27,,27,,84,552,"HK1003 -Blackpoint D2 - Rev.0E DD30092021"
1-3402,SI20UEX2-35,"PURCHASING, TRANSPORT FINISHING WORKS MATERIAL 20UEX01",5121,"HK1003-Rev.0E-3",TT_Task,"55902",-,-,-,0,TK_NotStart,17/07/2022,,08/10/2022,,"SI20UEX2-30 FS","SI20UEX2-30","SI20UEX2-55 FS","SI20UEX2-55",102,,114,,23,,26,,74,552,"HK1003 -Blackpoint D2 - Rev.0E DD30092021"
1-3403,SI20UEX2-30,"(F) FINISHING WORKS DWGS ON SITE RELEASED FOR EXEC. 20UEX01",5121,"HK1003-Rev.0E-3",TT_FinMile,"55902",-,-,-,0,TK_NotStart,16/07/2022,,16/07/2022,,"SI20UEX2-5 FS","SI20UEX2-5","SI20UEX2-35 FS","SI20UEX2-35",102,,102,,23,,23,,74,552,"HK1003 -Blackpoint D2 - Rev.0E DD30092021"
1-3404,SI20UEX2-5,"DETAIL DESIGN FINISHING WORKS 20UEX01",5121,"HK1003-Rev.0E-3",TT_Task,"55902",-,-,-,0,TK_NotStart,13/11/2021,,17/12/2021,,"SI20UEX2-20 FF","SI20UEX2-20","SI20UEX2-30 FS","SI20UEX2-30",67,,71,,15,,16,,38,2240,"HK1003 -Blackpoint D2 - Rev.0E DD30092021"
1-3405,SI20BZL7A17,"LIGHTING AND SMALL POWER INSTALLATION 20UEX01/20UBN",5121,"HK1003-Rev.0E-3",TT_Task,"55902",-,-,-,0,TK_NotStart,24/09/2022,,21/10/2022,,"SI--BZL4-40 FS,SI--BZL4-40 FF,SI20XKA7-15 FS","SI--BZL4-40,SI--BZL4-40,SI20XKA7-15","SI20UEX2-65 FS,SI20BZL7-16# FF,SI20BZL7-16# SS,SI20BZK7F29 FS,SI20UEX2-55 SS","SI20UEX2-65,SI20BZL7-16#,SI20BZL7-16#,SI20BZK7F29,SI20UEX2-55",112,,115,,26,,27,,81,616,"HK1003 -Blackpoint D2 - Rev.0E DD30092021"
1-3406,SI20PAB5-116,"(OTD-OS) FIRST PIPES ON SITE PIPING SYSTEM (OUTSIDE) 20PAB (LAST DELIVERY)",5121,"HK1003-Rev.0E-3",TT_FinMile,"55902",-,-,-,100,TK_Complete,21/08/2021,21/08/2021,21/08/2021,21/08/2021,"SI20PAB4-57 FS","SI20PAB4-57","SI20PAB5-85 FF,SI20UZ6A25 FS","SI20PAB5-85,SI20UZ6A25",55,55,55,55,12,12,12,12,27,,"HK1003 -Blackpoint D2 - Rev.0E DD30092021"
1-3407,SI20PAB4-57,"TRANSPORT PIPING SYSTEM (OUTSIDE) 20PAB (LAST DELIVERY)",5121,"HK1003-Rev.0E-3",TT_Task,"55902",-,-,-,100,TK_Complete,27/06/2021,27/06/2021,21/08/2021,21/08/2021,"SI20PAB4-56 FS","SI20PAB4-56","SI20PAB5-116 FS","SI20PAB5-116",47,47,55,55,11,11,12,12,19,,"HK1003 -Blackpoint D2 - Rev.0E DD30092021"
1-3408,SI20UBE5E47,"DRYING PERIOD FOR CONCRETE BEFORE OIL RESISTANT PAINT 20UBE",5121,"HK1003-Rev.0E-3",TT_Task,"55902",-,-,-,0,TK_NotStart,02/04/2022,,08/04/2022,,"SI20UBF5E15.04 FS,SI20UBF5-15.2 FS","SI20UBF5E15.04,SI20UBF5-15.2","SI20UBF5-17 FS","SI20UBF5-17",87,,87,,20,,20,,55,144,"HK1003 -Blackpoint D2 - Rev.0E DD30092021"
1-3409,SI20PAS6B16,"(RFP) READY FOR PIPING CT MAKE-UP WATER PUMP PAS",5121,"HK1003-Rev.0E-3",TT_Mile,"55902",-,-,-,0,TK_NotStart,23/03/2022,,23/03/2022,,"SI20PAS6B15 SS","SI20PAS6B15","SI20PAR6A15 FS","SI20PAR6A15",85,,85,,19,,19,,53,2480,"HK1003 -Blackpoint D2 - Rev.0E DD30092021"
1-3410,SI-UZA2-50,"(F) RING ROAD INCL. UNDERGROUND (U/G) DRAINAGE DRAWINGS REMAINING AREAS PART 3",5121,"HK1003-Rev.0E-3",TT_FinMile,"55902",-,-,-,100,TK_Complete,29/05/2021,29/05/2021,29/05/2021,29/05/2021,"SI-UZA2-45 FS","SI-UZA2-45","SI-UZA2-55 FS,SI-UZA2-55 FF","SI-UZA2-55,SI-UZA2-55",43,43,43,43,10,10,10,10,14,,"HK1003 -Blackpoint D2 - Rev.0E DD30092021"
1-3411,SI-UZA2-90,"SUBBASE RING ROAD INCL.  (U/G) DRAINAGE SYSTEM - PART 3",5121,"HK1003-Rev.0E-3",TT_Task,"55902",-,-,-,0,TK_NotStart,01/07/2022,,09/09/2022,,"SI-UZA2-98.03 FS,SI-UZA2-100.03 FS,SI-UZA2-101.02 FS","SI-UZA2-98.03,SI-UZA2-100.03,SI-UZA2-101.02","SI-UZA2-80# FF,SI-P222-129# FF,SI20UZA5-22 FS,SI20UZA5-23 FS,SI-P222-172 FS,SI20SGA6A26 SS","SI-UZA2-80#,SI-P222-129#,SI20UZA5-22,SI20UZA5-23,SI-P222-172,SI20SGA6A26",99,,109,,23,,25,,72,208,"HK1003 -Blackpoint D2 - Rev.0E DD30092021"
1-3412,SI20BZP7-170,"ERECTION CABLE TRAYS ON 20UQZ",5121,"HK1003-Rev.0E-3",TT_Task,"55902",-,-,-,0,TK_NotStart,29/10/2022,,11/11/2022,,"SI20UQZ5-157 FS,SI20BZP7-26 FS,SI--PEE7-20 FS,SI20BZP7-140 FS","SI20UQZ5-157,SI20BZP7-26,SI--PEE7-20,SI20BZP7-140","SI20PA6-1# SS,SI20PA6-1# FF,SI20PAR7A16 FS,SI20BZP7B10# FF,SI20BZP7B10# SS,SI20BZK7B47 FS","SI20PA6-1#,SI20PA6-1#,SI20PAR7A16,SI20BZP7B10#,SI20BZP7B10#,SI20BZK7B47",117,,118,,27,,27,,84,1224,"HK1003 -Blackpoint D2 - Rev.0E DD30092021"
1-3413,SI20HSJ3-82,"(RFS) READY FOR SHIPMENT SCR CATALYST MODULES",5121,"HK1003-Rev.0E-3",TT_FinMile,"55902",-,-,-,0,TK_NotStart,06/04/2023,,06/04/2023,,"SI20HSJ4B11 FS","SI20HSJ4B11","SI20HSJ4-41 FS","SI20HSJ4-41",139,,139,,32,,32,,94,0,"HK1003 -Blackpoint D2 - Rev.0E DD30092021"
1-3414,SI20HSJ4B11,"LOGISTICS AND CUSTOMS PREPARATION -  SCR CATALYST MODULES",5121,"HK1003-Rev.0E-3",TT_Task,"55902",-,-,-,0,TK_NotStart,10/03/2023,,06/04/2023,,"SI20HSJ3B71 FS","SI20HSJ3B71","SI20HSJ3-82 FS","SI20HSJ3-82",135,,139,,31,,32,,92,0,"HK1003 -Blackpoint D2 - Rev.0E DD30092021"
1-3415,SI20HSJ3B71,"TIMES OF COMPLETION (FINAL DATA IN KANLOG) -  SCR CATALYST MODULES",5121,"HK1003-Rev.0E-3",TT_FinMile,"55902",-,-,-,0,TK_NotStart,09/03/2023,,09/03/2023,,"SI20HSJ3-81 FS","SI20HSJ3-81","SI20HSJ4B11 FS","SI20HSJ4B11",135,,135,,31,,31,,92,0,"HK1003 -Blackpoint D2 - Rev.0E DD30092021"
1-3416,SI20HSJ4-41,"TRANSPORT SCR CATALYST MODULES",5121,"HK1003-Rev.0E-3",TT_Task,"55902",-,-,-,0,TK_NotStart,07/04/2023,,01/06/2023,,"SI20HSJ3-82 FS","SI20HSJ3-82","SI20HSJ4-42 FS","SI20HSJ4-42",139,,147,,32,,34,,94,0,"HK1003 -Blackpoint D2 - Rev.0E DD30092021"
1-3417,SI20HSJ4-42,"(OTD-OS) ON SITE SCR CATALYST MODULES",5121,"HK1003-Rev.0E-3",TT_FinMile,"55902",-,-,-,0,TK_NotStart,01/06/2023,,01/06/2023,,"SI20HSJ4-41 FS","SI20HSJ4-41","SI20L--9I81 FS","SI20L--9I81",147,,147,,34,,34,,97,0,"HK1003 -Blackpoint D2 - Rev.0E DD30092021"
1-3418,SI20HA-3B83,"(RFS) READY FOR SHIPMENT INSULATION MATERIAL HRSG20 (PIPES, DRUMS, VESSELS)",5121,"HK1003-Rev.0E-3",TT_FinMile,"55902",-,-,-,0,TK_NotStart,23/12/2022,,23/12/2022,,"SI20HA-4D44 FS","SI20HA-4D44","SI20HA-4B43 FS","SI20HA-4B43",124,,124,,29,,29,,87,448,"HK1003 -Blackpoint D2 - Rev.0E DD30092021"
1-3419,SI20HA-3B84,"(RFS) READY FOR SHIPMENT INSULATION MATERIAL HRSG20 (OUTLET DUCT & SEALING AREAS STACK)",5121,"HK1003-Rev.0E-3",TT_FinMile,"55902",-,-,-,0,TK_NotStart,12/05/2022,,12/05/2022,,"SI20HA-4D42 FS","SI20HA-4D42","SI20HA-4B45 FS","SI20HA-4B45",92,,92,,21,,21,,64,2248,"HK1003 -Blackpoint D2 - Rev.0E DD30092021"
1-3420,SI20HA-4B43,"TRANSPORT INSULATION MATERIAL HRSG20 (PIPES, DRUMS, VESSELS)",5121,"HK1003-Rev.0E-3",TT_Task,"55902",-,-,-,0,TK_NotStart,14/01/2023,,17/02/2023,,"SI20HA-3B83 FS","SI20HA-3B83","SI20HA-4B44 FS","SI20HA-4B44",128,,132,,29,,31,,88,448,"HK1003 -Blackpoint D2 - Rev.0E DD30092021"
1-3421,SI20HA-4B44,"(OTD-OS) ON SITE INSULATION MATERIAL HRSG20 (PIPES, DRUMS, VESSELS)",5121,"HK1003-Rev.0E-3",TT_FinMile,"55902",-,-,-,0,TK_NotStart,17/02/2023,,17/02/2023,,"SI20HA-4B43 FS","SI20HA-4B43","SI20HA-6A45 FS","SI20HA-6A45",132,,132,,31,,31,,91,448,"HK1003 -Blackpoint D2 - Rev.0E DD30092021"
1-3422,SI20HA-4B45,"TRANSPORT INSULATION MATERIAL HRSG20 (OUTLET DUCT & SEALING AREAS STACK)",5121,"HK1003-Rev.0E-3",TT_Task,"55902",-,-,-,0,TK_NotStart,13/05/2022,,16/06/2022,,"SI20HA-3B84 FS","SI20HA-3B84","SI20HA-4B46 FS","SI20HA-4B46",92,,97,,21,,22,,64,2248,"HK1003 -Blackpoint D2 - Rev.0E DD30092021"
1-3423,SI20HA-4B46,"(OTD-OS) ON SITE INSULATION MATERIAL HRSG20 (OUTLET DUCT & SEALING AREAS STACK)",5121,"HK1003-Rev.0E-3",TT_FinMile,"55902",-,-,-,0,TK_NotStart,16/06/2022,,16/06/2022,,"SI20HA-4B45 FS","SI20HA-4B45","SI20HB-6-40 FS","SI20HB-6-40",97,,97,,22,,22,,69,2248,"HK1003 -Blackpoint D2 - Rev.0E DD30092021"
1-3424,SI20HA-4D20,"(RFS) READY FOR SHIPMENT HRSG REMAINING MATERIAL",5121,"HK1003-Rev.0E-3",TT_FinMile,"55902",-,-,-,0,TK_NotStart,30/03/2022,,30/03/2022,,"SI-----1-05 FS,SI20HA-4D15 FS,SI20HA-4D15 FF","SI-----1-05,SI20HA-4D15,SI20HA-4D15","SI20HA-4D35 FS","SI20HA-4D35",86,,86,,20,,20,,54,2632,"HK1003 -Blackpoint D2 - Rev.0E DD30092021"
1-3425,SI20HSJ4-43,"TRANSPORT SCR SCR EQUIPMENT TO BE INSTALLED INSIDE HRSG CASING",5121,"HK1003-Rev.0E-3",TT_Task,"55902",-,-,-,0,TK_NotStart,09/12/2021,,07/01/2022,,"SI20HSJ3-83 FS","SI20HSJ3-83","SI20HSJ6-15 FS","SI20HSJ6-15",70,,74,,16,,17,,41,2800,"HK1003 -Blackpoint D2 - Rev.0E DD30092021"
1-3426,SI20HSJ3-83,"(RFS) READY FOR SHIPMENT SCR EQUIPMENT TO BE INSTALLED INSIDE HRSG CASING",5121,"HK1003-Rev.0E-3",TT_FinMile,"55902",-,-,-,0,TK_NotStart,08/12/2021,,08/12/2021,,"SI20HSJ3-86 FS","SI20HSJ3-86","SI20HSJ4-43 FS","SI20HSJ4-43",70,,70,,16,,16,,41,2800,"HK1003 -Blackpoint D2 - Rev.0E DD30092021"
1-3427,SI20UGU2-51,"BASIC DESIGN / BASIC BUILDING DESIGN INCL. 3D MODEL 20UGU01",5121,"HK1003-Rev.0E-3",TT_Task,"55902",-,-,-,100,TK_Complete,28/05/2021,28/05/2021,16/06/2021,16/06/2021,"SI20UGU2-52 FS","SI20UGU2-52","SI20UGU2-53 FS","SI20UGU2-53",42,42,45,45,10,10,10,10,14,,"HK1003 -Blackpoint D2 - Rev.0E DD30092021"
1-3428,SI20UGU2-53,"DETAIL DESIGN CONCRETE STRUCTURE 20UGU01",5121,"HK1003-Rev.0E-3",TT_Task,"55902",-,-,-,100,TK_Complete,17/06/2021,17/06/2021,31/07/2021,31/07/2021,"SI20UGU2-51 FS,SI20UGU2-52 FF","SI20UGU2-51,SI20UGU2-52","SI20UGU2-54 FF,SI20UGU2-58 FS,SI20UGU2-55 FS,SI20UGU2-55 FF","SI20UGU2-54,SI20UGU2-58,SI20UGU2-55,SI20UGU2-55",45,45,52,52,10,10,12,12,17,,"HK1003 -Blackpoint D2 - Rev.0E DD30092021"
1-3429,SI20UGU5-81,"(RFE) FOUNDATION 20UGU01",5121,"HK1003-Rev.0E-3",TT_FinMile,"55902",-,-,-,0,TK_NotStart,26/04/2022,,26/04/2022,,"SI20UGU5-80 FS","SI20UGU5-80","SI20GM-6B15 FS","SI20GM-6B15",90,,90,,21,,21,,59,960,"HK1003 -Blackpoint D2 - Rev.0E DD30092021"
1-3430,SI20UGU2-58,"(F) CONCRETE STRUCTURE DWGS ON SITE RELEASED FOR EXECUTION 20UGU01",5121,"HK1003-Rev.0E-3",TT_FinMile,"55902",-,-,-,0,TK_NotStart,08/03/2022,,08/03/2022,,"SI20UGU2-53 FS,SI20UGU2-55 FS,SI20UGU2-57 FS","SI20UGU2-53,SI20UGU2-55,SI20UGU2-57","SI20UGU5-76 FS","SI20UGU5-76",83,,83,,19,,19,,52,960,"HK1003 -Blackpoint D2 - Rev.0E DD30092021"
1-3431,SI20UGU5-80,"CONSTRUCTION WALLS PUMP PIT 20UGU01",5121,"HK1003-Rev.0E-3",TT_Task,"55902",-,-,-,0,TK_NotStart,06/04/2022,,26/04/2022,,"SI20UGU5-78 FS,SI20UGU5-79 FS","SI20UGU5-78,SI20UGU5-79","SI20UGU5-81 FS,SI20UGU5-77# FF","SI20UGU5-81,SI20UGU5-77#",87,,90,,20,,21,,56,960,"HK1003 -Blackpoint D2 - Rev.0E DD30092021"
1-3432,SI20UGU5-78,"(H) START PLACING FORMWORK 20UGU01",5121,"HK1003-Rev.0E-3",TT_Mile,"55902",-,-,-,0,TK_NotStart,23/03/2022,,23/03/2022,,"SI20UGU5-76 FS,SI20UGU2-56 FS,SI20UGU2-57 FS,SI20UGU2-68 FS","SI20UGU5-76,SI20UGU2-56,SI20UGU2-57,SI20UGU2-68","SI20UGU5-80 FS,SI20UGU5-79 FS","SI20UGU5-80,SI20UGU5-79",85,,85,,19,,19,,53,960,"HK1003 -Blackpoint D2 - Rev.0E DD30092021"
1-3433,SI20UGU5-76,"WORK PREPARATION / EXCAVATION 20UGU01",5121,"HK1003-Rev.0E-3",TT_Task,"55902",-,-,-,0,TK_NotStart,09/03/2022,,22/03/2022,,"SI20UGU2-58 FS,SI20UGU2-54 FS,SI20UBF5-05 FS,SI20UBF5E15 SS,SI-P222-84 FS,SI-P222-128 FS,SI20UGU2-67 FS","SI20UGU2-58,SI20UGU2-54,SI20UBF5-05,SI20UBF5E15,SI-P222-84,SI-P222-128,SI20UGU2-67","SI20UGU5-78 FS,SI20UGU5-79 FS,SI-P222-131# FF,SI-P222-131# SS","SI20UGU5-78,SI20UGU5-79,SI-P222-131#,SI-P222-131#",83,,85,,19,,19,,52,960,"HK1003 -Blackpoint D2 - Rev.0E DD30092021"
1-3434,SI20UGU2-54,"PREPARATION FOUNDATION GROUNDING DWGS 20UGU01",5121,"HK1003-Rev.0E-3",TT_Task,"55902",-,-,-,100,TK_Complete,18/07/2021,18/07/2021,31/07/2021,31/07/2021,"SI20UGU2-53 FF","SI20UGU2-53","SI20UGU5-76 FS,SI20UGU2-55 FS","SI20UGU5-76,SI20UGU2-55",50,50,52,52,11,11,12,12,22,,"HK1003 -Blackpoint D2 - Rev.0E DD30092021"
1-3435,SI20UGU2-52,"(MS3) CONCRETE STRUCTURE FINAL DIMENSIONS, LOADS AVAILABLE 20UGU01",5121,"HK1003-Rev.0E-3",TT_FinMile,"55902",-,-,-,100,TK_Complete,28/05/2021,28/05/2021,28/05/2021,28/05/2021,"SI--G--2-20 FS,SI--GM-2B60 FS","SI--G--2-20,SI--GM-2B60","SI20UGU2-51 FS,SI20UGU2-53 FF","SI20UGU2-51,SI20UGU2-53",42,42,42,42,10,10,10,10,14,,"HK1003 -Blackpoint D2 - Rev.0E DD30092021"
1-3436,SI20UGU2-56,"BD - SUBMISSION & APPROVAL - PUMP PIT DESIGN 20UGU01",5121,"HK1003-Rev.0E-3",TT_Task,"55902",-,-,-,0,TK_NotStart,10/10/2021,,08/12/2021,,"SI20UGU2-55 FS,SI--UBF2-80 SS,SI-P221-445& FS,SI--UBA2-96 SS","SI20UGU2-55,SI--UBF2-80,SI-P221-445&,SI--UBA2-96","SI20UGU2-57 FS,SI20UGU5-78 FS,SI20UGU2-67 FS","SI20UGU2-57,SI20UGU5-78,SI20UGU2-67",62,,70,,14,,16,,33,1456,"HK1003 -Blackpoint D2 - Rev.0E DD30092021"
1-3437,SI20UGU2-55,"CLIENT - REVIEW - DETAIL DESIGN CONCRETE - PUMP PIT 20UGU01",5121,"HK1003-Rev.0E-3",TT_Task,"55902",-,-,-,100,TK_Complete,01/08/2021,01/08/2021,25/08/2021,25/08/2021,"SI20UGU2-53 FS,SI20UGU2-53 FF,SI20UGU2-54 FS","SI20UGU2-53,SI20UGU2-53,SI20UGU2-54","SI20UGU2-56 FS,SI20UGU2-58 FS","SI20UGU2-56,SI20UGU2-58",52,52,55,55,12,12,12,12,24,,"HK1003 -Blackpoint D2 - Rev.0E DD30092021"
1-3438,SI20UGU2-57,"BD - CONSENT LETTER PUMP PIT DESIGN 20UGU01",5121,"HK1003-Rev.0E-3",TT_Task,"55902",-,-,-,0,TK_NotStart,09/12/2021,,05/01/2022,,"SI20UGU2-56 FS","SI20UGU2-56","SI20UGU5-78 FS,SI20UGU2-58 FS,SI20UGU2-68 FS","SI20UGU5-78,SI20UGU2-58,SI20UGU2-68",70,,74,,16,,17,,41,1456,"HK1003 -Blackpoint D2 - Rev.0E DD30092021"
1-3439,SI20UGU5-79,"CONSTRUCTION BASE PLATE PUMP PIT 20UGU01",5121,"HK1003-Rev.0E-3",TT_Task,"55902",-,-,-,0,TK_NotStart,23/03/2022,,05/04/2022,,"SI20UGU5-76 FS,SI20UGU5-78 FS,SI20UBF5-19 SS","SI20UGU5-76,SI20UGU5-78,SI20UBF5-19","SI20UGU5-80 FS,SI20UGU5-77# SS","SI20UGU5-80,SI20UGU5-77#",85,,87,,19,,20,,53,960,"HK1003 -Blackpoint D2 - Rev.0E DD30092021"
1-3440,SI20UGU2-60,"BASIC DESIGN / BASIC BUILDING DESIGN INCL. 3D MODEL 20UGU02",5121,"HK1003-Rev.0E-3",TT_Task,"55902",-,-,-,100,TK_Complete,31/05/2021,31/05/2021,20/06/2021,20/06/2021,"SI20UGU2-59 FS","SI20UGU2-59","SI20UGU2-61 FS","SI20UGU2-61",43,43,46,46,10,10,10,10,15,,"HK1003 -Blackpoint D2 - Rev.0E DD30092021"
1-3441,SI20UGU2-61,"DETAIL DESIGN CONCRETE STRUCTURE 20UGU02",5121,"HK1003-Rev.0E-3",TT_Task,"55902",-,-,-,100,TK_Complete,02/07/2021,02/07/2021,15/08/2021,15/08/2021,"SI20UGU2-60 FS,SI20UGU2-59 FF,SI20UGU2-59 FS","SI20UGU2-60,SI20UGU2-59,SI20UGU2-59","SI20UGU2-62 FF,SI20UGU2-66 FS,SI20UGU2-63 FS,SI20UGU2-63 FF","SI20UGU2-62,SI20UGU2-66,SI20UGU2-63,SI20UGU2-63",47,47,54,54,11,11,12,12,20,,"HK1003 -Blackpoint D2 - Rev.0E DD30092021"
1-3442,SI20UGU5-87,"(RFE) FOUNDATION 20UGU02",5121,"HK1003-Rev.0E-3",TT_FinMile,"55902",-,-,-,0,TK_NotStart,01/05/2022,,01/05/2022,,"SI20UGU5-86 FS","SI20UGU5-86","SI20GM-8E10 FS","SI20GM-8E10",91,,91,,21,,21,,60,2832,"HK1003 -Blackpoint D2 - Rev.0E DD30092021"
1-3443,SI20UGU2-66,"(F) CONCRETE STRUCTURE DWGS ON SITE RELEASED FOR EXECUTION 20UGU02",5121,"HK1003-Rev.0E-3",TT_FinMile,"55902",-,-,-,0,TK_NotStart,20/03/2022,,20/03/2022,,"SI20UGU2-61 FS,SI20UGU2-63 FS,SI20UGU2-65 FS","SI20UGU2-61,SI20UGU2-63,SI20UGU2-65","SI20UGU5-82 FS","SI20UGU5-82",85,,85,,19,,19,,53,2832,"HK1003 -Blackpoint D2 - Rev.0E DD30092021"
1-3444,SI20UGU5-86,"CONSTRUCTION WALLS DRAINAGE PIT 20UGU02",5121,"HK1003-Rev.0E-3",TT_Task,"55902",-,-,-,0,TK_NotStart,18/04/2022,,01/05/2022,,"SI20UGU5-84 FS,SI20UGU5-85 FS","SI20UGU5-84,SI20UGU5-85","SI20UGU5-87 FS,SI20UGU5-83# FF","SI20UGU5-87,SI20UGU5-83#",89,,91,,20,,21,,58,2832,"HK1003 -Blackpoint D2 - Rev.0E DD30092021"
1-3445,SI20UGU5-84,"(H) START PLACING FORMWORK 20UGU02",5121,"HK1003-Rev.0E-3",TT_Mile,"55902",-,-,-,0,TK_NotStart,04/04/2022,,04/04/2022,,"SI20UGU5-82 FS,SI20UGU2-64 FS,SI20UGU2-65 FS,SI20UGU2-70 FS","SI20UGU5-82,SI20UGU2-64,SI20UGU2-65,SI20UGU2-70","SI20UGU5-86 FS,SI20UGU5-85 FS","SI20UGU5-86,SI20UGU5-85",87,,87,,20,,20,,56,2832,"HK1003 -Blackpoint D2 - Rev.0E DD30092021"
1-3446,SI20UGU5-82,"WORK PREPARATION / EXCAVATION 20UGU02",5121,"HK1003-Rev.0E-3",TT_Task,"55902",-,-,-,0,TK_NotStart,21/03/2022,,03/04/2022,,"SI20UGU2-66 FS,SI20UGU2-62 FS,SI20UBY5-53 SS,SI-P222-84 FS,SI-P222-128 FS,SI20UGU2-69 FS","SI20UGU2-66,SI20UGU2-62,SI20UBY5-53,SI-P222-84,SI-P222-128,SI20UGU2-69","SI20UGU5-84 FS,SI20UGU5-85 FS,SI-P222-131# FF,SI-P222-131# SS","SI20UGU5-84,SI20UGU5-85,SI-P222-131#,SI-P222-131#",85,,87,,19,,20,,53,2832,"HK1003 -Blackpoint D2 - Rev.0E DD30092021"
1-3447,SI20UGU2-62,"PREPARATION FOUNDATION GROUNDING DWGS 20UGU02",5121,"HK1003-Rev.0E-3",TT_Task,"55902",-,-,-,100,TK_Complete,02/08/2021,02/08/2021,15/08/2021,15/08/2021,"SI20UGU2-61 FF","SI20UGU2-61","SI20UGU5-82 FS,SI20UGU2-63 FS","SI20UGU5-82,SI20UGU2-63",52,52,54,54,12,12,12,12,24,,"HK1003 -Blackpoint D2 - Rev.0E DD30092021"
1-3448,SI20UGU2-59,"(MS3) CONCRETE STRUCTURE FINAL DIMENSIONS, LOADS AVAILABLE 20UGU02",5121,"HK1003-Rev.0E-3",TT_FinMile,"55902",-,-,-,100,TK_Complete,28/05/2021,28/05/2021,28/05/2021,28/05/2021,"SI--GM-2B60 FS","SI--GM-2B60","SI20UGU2-60 FS,SI20UGU2-61 FF,SI20UGU2-61 FS","SI20UGU2-60,SI20UGU2-61,SI20UGU2-61",42,42,42,42,10,10,10,10,14,,"HK1003 -Blackpoint D2 - Rev.0E DD30092021"
1-3449,SI20UGU2-64,"BD - SUBMISSION & APPROVAL - DETAIL DESIGN CONCRETE 20UGU02",5121,"HK1003-Rev.0E-3",TT_Task,"55902",-,-,-,0,TK_NotStart,15/11/2021,,13/01/2022,,"SI20UGU2-63 FS,SI20UBY2-62 SS,SI-P221-285& FS,SI--UBA2-96 SS","SI20UGU2-63,SI20UBY2-62,SI-P221-285&,SI--UBA2-96","SI20UGU2-65 FS,SI20UGU5-84 FS,SI20UGU2-69 FS","SI20UGU2-65,SI20UGU5-84,SI20UGU2-69",67,,75,,15,,17,,38,3136,"HK1003 -Blackpoint D2 - Rev.0E DD30092021"
1-3450,SI20UGU2-63,"CLIENT - REVIEW - DETAIL DESIGN CONCRETE - DRAINAGE PIT 20UGU02",5121,"HK1003-Rev.0E-3",TT_Task,"55902",-,-,-,49,TK_Active,16/08/2021,16/08/2021,14/11/2021,,"SI20UGU2-61 FS,SI20UGU2-61 FF,SI20UGU2-62 FS","SI20UGU2-61,SI20UGU2-61,SI20UGU2-62","SI20UGU2-64 FS,SI20UGU2-66 FS","SI20UGU2-64,SI20UGU2-66",54,54,67,,12,12,15,,26,3136,"HK1003 -Blackpoint D2 - Rev.0E DD30092021"
1-3451,SI20UGU2-65,"BD - CONSENT LETTER DETAIL DESIGN CONCRETE 20UGU02",5121,"HK1003-Rev.0E-3",TT_Task,"55902",-,-,-,0,TK_NotStart,14/01/2022,,10/02/2022,,"SI20UGU2-64 FS","SI20UGU2-64","SI20UGU5-84 FS,SI20UGU2-66 FS,SI20UGU2-70 FS","SI20UGU5-84,SI20UGU2-66,SI20UGU2-70",75,,79,,17,,18,,45,3136,"HK1003 -Blackpoint D2 - Rev.0E DD30092021"
1-3452,SI20UGU5-85,"CONSTRUCTION BASE PLATE DRAINAGE PIT 20UGU02",5121,"HK1003-Rev.0E-3",TT_Task,"55902",-,-,-,0,TK_NotStart,04/04/2022,,17/04/2022,,"SI20UGU5-82 FS,SI20UGU5-84 FS","SI20UGU5-82,SI20UGU5-84","SI20UGU5-86 FS,SI20UGU5-83# SS","SI20UGU5-86,SI20UGU5-83#",87,,89,,20,,20,,56,2832,"HK1003 -Blackpoint D2 - Rev.0E DD30092021"
1-3453,CLP20ULZ5-80,"(RFE) FOUNDATION 20ULZ02 (CLP Scope)",5121,"HK1003-Rev.0E-3",TT_FinMile,"55902",-,-,-,100,TK_Complete,30/06/2021,30/06/2021,30/06/2021,30/06/2021,"CLP20ULZ5-78 FS","CLP20ULZ5-78","SI20UBY5-06 FS,SI-----5-21& FS,SI20BZP7-182 FS,SI20ULD6B15 FS","SI20UBY5-06,SI-----5-21&,SI20BZP7-182,SI20ULD6B15",47,47,47,47,11,11,11,11,19,,"HK1003 -Blackpoint D2 - Rev.0E DD30092021"
1-3454,CLP20ULZ5-78,"CONSTRUCTION FOUNDATION 20ULZ02 (CLP Scope)",5121,"HK1003-Rev.0E-3",TT_Task,"55902",-,-,-,100,TK_Complete,03/06/2021,03/06/2021,30/06/2021,30/06/2021,"CLP20ULZ5-79 SS","CLP20ULZ5-79","CLP20ULZ5-80 FS","CLP20ULZ5-80",43,43,47,47,10,10,11,11,15,,"HK1003 -Blackpoint D2 - Rev.0E DD30092021"
1-3455,CLP20ULZ5-77,"WORK PREPARATION, EXCAVATION 20ULZ02 (CLP Scope)",5121,"HK1003-Rev.0E-3",TT_Task,"55902",-,-,-,100,TK_Complete,20/05/2021,20/05/2021,02/06/2021,02/06/2021,"CLP20ULZ2-104 FS,CLP20ULZ2-105 FS,CL-3335-80 FS","CLP20ULZ2-104,CLP20ULZ2-105,CL-3335-80","CLP20ULZ5-79 FS","CLP20ULZ5-79",41,41,43,43,9,9,10,10,13,,"HK1003 -Blackpoint D2 - Rev.0E DD30092021"
1-3456,CLP20ULZ5-79,"(H) START PLACING FORMWORK 20ULZ02 (CLP Scope)",5121,"HK1003-Rev.0E-3",TT_Mile,"55902",-,-,-,100,TK_Complete,03/06/2021,03/06/2021,03/06/2021,03/06/2021,"CLP20ULZ5-77 FS,CLP20ULZ2-106 FS","CLP20ULZ5-77,CLP20ULZ2-106","CLP20ULZ5-78 SS","CLP20ULZ5-78",43,43,43,43,10,10,10,10,15,,"HK1003 -Blackpoint D2 - Rev.0E DD30092021"
1-3457,CLP20ULZ2-100,"PREPARATION FOUNDATION GROUNDING DWGS 20ULZ02 (CLP Scope)",5121,"HK1003-Rev.0E-3",TT_Task,"55902",-,-,-,100,TK_Complete,13/01/2021,13/01/2021,26/01/2021,26/01/2021,"CLP20ULZ2-99 FF","CLP20ULZ2-99","CLP20ULZ2-101 FS","CLP20ULZ2-101",23,23,25,25,5,5,5,5,1,,"HK1003 -Blackpoint D2 - Rev.0E DD30092021"
1-3458,CLP20ULZ2-98,"BASIC BUILDING DESIGN INCL. 3D MODEL 20ULZ02 (CLP Scope)",5121,"HK1003-Rev.0E-3",TT_Task,"55902",-,-,-,100,TK_Complete,12/11/2020,12/11/2020,08/12/2020,08/12/2020,"CLP20ULZ2-97 FS","CLP20ULZ2-97","CLP20ULZ2-99 FS","CLP20ULZ2-99",14,14,18,18,3,3,4,4,0,,"HK1003 -Blackpoint D2 - Rev.0E DD30092021"
1-3459,CLP20ULZ2-97,"(MS3) CONCRETE STRUCTURE FINAL DIMENSIONS, LOADS AVAILABLE 20ULZ02 (CLP Scope)",5121,"HK1003-Rev.0E-3",TT_FinMile,"55902",-,-,-,100,TK_Complete,11/11/2020,11/11/2020,11/11/2020,11/11/2020,"SI-----1-01 FS","SI-----1-01","CLP20ULZ2-99 FS,CLP20ULZ2-98 FS","CLP20ULZ2-99,CLP20ULZ2-98",14,14,14,14,3,3,3,3,0,,"HK1003 -Blackpoint D2 - Rev.0E DD30092021"
1-3460,CLP20ULZ2-104,"(F) CONCRETE STRUCTURE DWGS ON SITE RELEASED FOR EXECUTION 20ULZ02 (CLP Scope)",5121,"HK1003-Rev.0E-3",TT_FinMile,"55902",-,-,-,100,TK_Complete,19/05/2021,19/05/2021,19/05/2021,19/05/2021,"CLP20ULZ2-99 FS,CLP20ULZ2-103 FS","CLP20ULZ2-99,CLP20ULZ2-103","CLP20ULZ5-77 FS","CLP20ULZ5-77",41,41,41,41,9,9,9,9,13,,"HK1003 -Blackpoint D2 - Rev.0E DD30092021"
1-3461,CLP20ULZ2-99,"DETAIL DESIGN CONCRETE STRUCTURE 20ULZ02 (CLP Scope)",5121,"HK1003-Rev.0E-3",TT_Task,"55902",-,-,-,100,TK_Complete,09/12/2020,09/12/2020,26/01/2021,26/01/2021,"CLP20ULZ2-98 FS,CLP20ULZ2-97 FS","CLP20ULZ2-98,CLP20ULZ2-97","CLP20ULZ2-100 FF,CLP20ULZ2-104 FS,CLP20ULZ2-101 FS","CLP20ULZ2-100,CLP20ULZ2-104,CLP20ULZ2-101",18,18,25,25,4,4,5,5,1,,"HK1003 -Blackpoint D2 - Rev.0E DD30092021"
1-3462,CLP20ULZ2-101,"CLIENT - REVIEW - DETAIL DESIGN CONCRETE - 20ULZ02 (CLP Scope)",5121,"HK1003-Rev.0E-3",TT_Task,"55902",-,-,-,100,TK_Complete,27/01/2021,27/01/2021,20/02/2021,20/02/2021,"CLP20ULZ2-99 FS,CLP20ULZ2-100 FS","CLP20ULZ2-99,CLP20ULZ2-100","CLP20ULZ2-102 FS,CLP20ULZ2-102 FF","CLP20ULZ2-102,CLP20ULZ2-102",25,25,29,29,5,5,6,6,3,,"HK1003 -Blackpoint D2 - Rev.0E DD30092021"
1-3463,CLP20ULZ2-102,"BD - SUBMISSION & APPROVAL - DETAIL DESIGN CONCRETE - 20ULZ02 (CLP Scope)",5121,"HK1003-Rev.0E-3",TT_Task,"55902",-,-,-,100,TK_Complete,21/02/2021,21/02/2021,21/04/2021,21/04/2021,"CLP20ULZ2-101 FS,CLP20ULZ2-101 FF","CLP20ULZ2-101,CLP20ULZ2-101","CLP20ULZ2-103 FS,CLP20ULZ2-103 FF,CLP20ULZ2-105 FS","CLP20ULZ2-103,CLP20ULZ2-103,CLP20ULZ2-105",29,29,37,37,6,6,8,8,5,,"HK1003 -Blackpoint D2 - Rev.0E DD30092021"
1-3464,CLP20ULZ2-103,"BD - CONSENT LETTER - DESIGN  20ULZ02 (CLP Scope)",5121,"HK1003-Rev.0E-3",TT_Task,"55902",-,-,-,100,TK_Complete,22/04/2021,22/04/2021,19/05/2021,19/05/2021,"CLP20ULZ2-102 FS,CLP20ULZ2-102 FF","CLP20ULZ2-102,CLP20ULZ2-102","CLP20ULZ2-104 FS,CLP20ULZ2-106 FS","CLP20ULZ2-104,CLP20ULZ2-106",37,37,41,41,8,8,9,9,9,,"HK1003 -Blackpoint D2 - Rev.0E DD30092021"
1-3465,SI--UMC2Y82,"(MS2) PRELIMINARY DESIGN INPUT AVAILABLE CEP/LDK PIT 20UMC",5121,"HK1003-Rev.0E-3",TT_FinMile,"55902",-,-,-,100,TK_Complete,31/12/2020,31/12/2020,31/12/2020,31/12/2020,"SI-----1-03 FS","SI-----1-03","SI--UMC2Y79 FS,SI--UMC2A02 FS","SI--UMC2Y79,SI--UMC2A02",21,21,21,21,5,5,5,5,1,,"HK1003 -Blackpoint D2 - Rev.0E DD30092021"
1-3466,SI20UHX2-25,"CLIENT - REVIEW - DETAIL DESIGN CONCRETE - 20UHX",5121,"HK1003-Rev.0E-3",TT_Task,"55902",-,-,-,4,TK_Active,29/09/2021,29/09/2021,23/10/2021,,"SI20UHX2-42 FS","SI20UHX2-42","SI20UHX2-30 SS","SI20UHX2-30",60,60,64,,14,14,14,,30,3136,"HK1003 -Blackpoint D2 - Rev.0E DD30092021"
1-3467,SI20UHX2-30,"BD - SUBMISSION & APPROVAL - DETAIL DESIGN CONCRETE  20UHX",5121,"HK1003-Rev.0E-3",TT_Task,"55902",-,-,-,0,TK_NotStart,10/10/2021,,08/12/2021,,"SI20UHX2-25 SS,SI20UBA2-30 SS,SI-P221-110& FS,SI--UBA2-96 SS","SI20UHX2-25,SI20UBA2-30,SI-P221-110&,SI--UBA2-96","SI20UHX2-35 FS","SI20UHX2-35",62,,70,,14,,16,,33,3056,"HK1003 -Blackpoint D2 - Rev.0E DD30092021"
1-3468,SI20UHX2-35,"BD - CONSENT LETTER - DETAIL DESIGN CONCRETE  20UHX",5121,"HK1003-Rev.0E-3",TT_Task,"55902",-,-,-,0,TK_NotStart,09/12/2021,,19/01/2022,,"SI20UHX2-30 FS","SI20UHX2-30","SI20UHX5-05 FS,SI20UHX2-43 FS,SI20UHX2-44 FS,SI20UHX2-45 FF","SI20UHX5-05,SI20UHX2-43,SI20UHX2-44,SI20UHX2-45",70,,76,,16,,17,,41,3056,"HK1003 -Blackpoint D2 - Rev.0E DD30092021"
1-3469,SI20UBA5-82,"(RFE) READY FOR PLACING ELECTRICAL MODULESs 20UBA1110/20",5121,"HK1003-Rev.0E-3",TT_FinMile,"55902",-,-,-,0,TK_NotStart,28/10/2022,,28/10/2022,,"SI20UBA5-55 FS,SI20UBA5-55 FF,SI20BZP7-60 FS,SI20UBA5-55.03 FS","SI20UBA5-55,SI20UBA5-55,SI20BZP7-60,SI20UBA5-55.03","SI20UBA7C-31 FS","SI20UBA7C-31",116,,116,,27,,27,,84,376,"HK1003 -Blackpoint D2 - Rev.0E DD30092021"
1-3470,SI20UBA5-85,"(RFE) READY FOR PLACING ELECTRICAL MODULESs 20UBA7910/20",5121,"HK1003-Rev.0E-3",TT_FinMile,"55902",-,-,-,0,TK_NotStart,10/06/2022,,10/06/2022,,"SI20UBA5-15 FS,SI20UBA5-15 FF,SI20BZP7-50 FS","SI20UBA5-15,SI20UBA5-15,SI20BZP7-50","SI20UBA7-26 FS","SI20UBA7-26",96,,96,,22,,22,,69,968,"HK1003 -Blackpoint D2 - Rev.0E DD30092021"
1-3471,SI20UBA5-87,"FINISHING WORKS 20UBA7910/20",5121,"HK1003-Rev.0E-3",TT_Task,"55902",-,-,-,0,TK_NotStart,22/08/2022,,18/09/2022,,"SI20UBA5B45 FS,SI20UBA5-15 FS","SI20UBA5B45,SI20UBA5-15","SI-----8-7 FS","SI-----8-7",107,,111,,25,,25,,78,1592,"HK1003 -Blackpoint D2 - Rev.0E DD30092021"
1-3472,SI20UBA5-89,"FINISHING WORKS 20UBA1110/20",5121,"HK1003-Rev.0E-3",TT_Task,"55902",-,-,-,0,TK_NotStart,12/12/2022,,22/01/2023,,"SI20UBA5B-50 FS,SI20UBA7C-31 FS","SI20UBA5B-50,SI20UBA7C-31","SI20UBA5-60 FS","SI20UBA5-60",123,,129,,28,,30,,87,584,"HK1003 -Blackpoint D2 - Rev.0E DD30092021"
1-3473,SI20UBA5-90,"(RFE) READY FOR PLACING ELECTRICAL MODULESs 20UBA7xxx",5121,"HK1003-Rev.0E-3",TT_FinMile,"55902",-,-,-,0,TK_NotStart,04/07/2022,,04/07/2022,,"SI20UBA5-17 FS,SI20UBA5-17 FF,SI20BZP7-160 FS","SI20UBA5-17,SI20UBA5-17,SI20BZP7-160","SI20UBA7-102 FS","SI20UBA7-102",100,,100,,23,,23,,72,592,"HK1003 -Blackpoint D2 - Rev.0E DD30092021"
1-3474,SI20UBA5-92,"FINISHING WORKS 20UBA7xxx",5121,"HK1003-Rev.0E-3",TT_Task,"55902",-,-,-,0,TK_NotStart,27/07/2022,,20/09/2022,,"SI20UBA7-102 FS,SI20UBA5B47 FS","SI20UBA7-102,SI20UBA5B47","SI20B--8-50 FS,SI20UBA5-47 FS","SI20B--8-50,SI20UBA5-47",103,,111,,24,,26,,75,1576,"HK1003 -Blackpoint D2 - Rev.0E DD30092021"
1-3475,SI20UBA5-93,"(RFE) READY FOR PLACING ELECTRICAL MODULESs 20UBA8110/20",5121,"HK1003-Rev.0E-3",TT_FinMile,"55902",-,-,-,0,TK_NotStart,04/11/2022,,04/11/2022,,"SI20UBA5-52 FS,SI20BZP7-85 FS","SI20UBA5-52,SI20BZP7-85","SI20UBA7-27 FS","SI20UBA7-27",117,,117,,27,,27,,84,184,"HK1003 -Blackpoint D2 - Rev.0E DD30092021"
1-3476,SI20UBA5-95,"FINISHING WORKS 20UBA8110/20",5121,"HK1003-Rev.0E-3",TT_Task,"55902",-,-,-,0,TK_NotStart,12/12/2022,,08/01/2023,,"SI20UBA7-27 FS,SI20UBA5B46 FS","SI20UBA7-27,SI20UBA5B46","SI20UBA5-46 FS","SI20UBA5-46",123,,127,,28,,29,,87,696,"HK1003 -Blackpoint D2 - Rev.0E DD30092021"
1-3477,SI20UBA5-96,"(RFE) READY FOR PLACING ELECTRICAL MODULESs 01UBA9010/20",5121,"HK1003-Rev.0E-3",TT_FinMile,"55902",-,-,-,0,TK_NotStart,26/06/2022,,26/06/2022,,"SI20UBA5C-10 FS,SI20BZP7-45 FS,SI20UBA4C-5 FS","SI20UBA5C-10,SI20BZP7-45,SI20UBA4C-5","SI20UBA7C-10 FS","SI20UBA7C-10",99,,99,,23,,23,,71,912,"HK1003 -Blackpoint D2 - Rev.0E DD30092021"
1-3478,SI20UBA5-98,"FINISHING WORKS 01UBA9010/20",5121,"HK1003-Rev.0E-3",TT_Task,"55902",-,-,-,0,TK_NotStart,24/09/2022,,21/10/2022,,"SI20UBA5C-45 FS,SI20UBA7C-10 FS","SI20UBA5C-45,SI20UBA7C-10","SI20UBA5C-20 FS","SI20UBA5C-20",112,,115,,26,,27,,81,1328,"HK1003 -Blackpoint D2 - Rev.0E DD30092021"
1-3479,SI20BAT2-88,"AUDIT AT TRANSFORMER MANUFACTURER",5121,"HK1003-Rev.0E-3",TT_Task,"55902",-,-,-,100,TK_Complete,07/04/2021,07/04/2021,04/05/2021,04/05/2021,"SI20BAT2-75 FS","SI20BAT2-75","SI20BAT2-80 FF","SI20BAT2-80",35,35,39,39,8,8,9,9,7,,"HK1003 -Blackpoint D2 - Rev.0E DD30092021"
1-3480,SP--B--2-61,"FINAL ELECTRICAL LOAD DATA (VEL) FOR LV  (HRSG/BOP)",5121,"HK1003-Rev.0E-3",TT_Mile,"55902",-,-,-,100,TK_Complete,18/06/2021,18/06/2021,18/06/2021,18/06/2021,"SI20SCA2-88 FS,SI--HA-2-100 FS,SI--EK-2-90 FS,SI--PAD2-87 FS,SI--LBF2B86 FS,SI--EK-2-91 FS,SI--PDB2B86 FS,SI--PGB2C86 FS,SI--LCB2B86 FS,SI--GM-2B89 FS,SI--LDK2B87 FS,SI--PGB2B86 FS,SI--PCB2B86 FS,SI20LCL2B88 FS,SI--LCA2B86 FS,SI--PAC2B87 FS,SI--PAD2-88 FS,SI--SMM2-87 FS,SI20SMG2-86 FS,SI20SA-2-86 FS,SI-----2E93 FS,SI20PAH2-87 FS,SI20LBG2C87 FS,SI--LDK2B88 FS,SI20HSJ2-94 FS,SI20MBV2-90 FS,SI--LAC2B86 FS,SI20PCC2A96 FS,SI20PAA2-25 FS,SI--SMM2-92 FS","SI20SCA2-88,SI--HA-2-100,SI--EK-2-90,SI--PAD2-87,SI--LBF2B86,SI--EK-2-91,SI--PDB2B86,SI--PGB2C86,SI--LCB2B86,SI--GM-2B89,SI--LDK2B87,SI--PGB2B86,SI--PCB2B86,SI20LCL2B88,SI--LCA2B86,SI--PAC2B87,SI--PAD2-88,SI--SMM2-87,SI20SMG2-86,SI20SA-2-86,SI-----2E93,SI20PAH2-87,SI20LBG2C87,SI--LDK2B88,SI20HSJ2-94,SI20MBV2-90,SI--LAC2B86,SI20PCC2A96,SI20PAA2-25,SI--SMM2-92","SI--BAW2-86 SS","SI--BAW2-86",45,45,45,45,10,10,10,10,18,,"HK1003 -Blackpoint D2 - Rev.0E DD30092021"
1-3481,SI--BAW2-86,"FINALIZE VEL INPUT DATA (before ELV3)",5121,"HK1003-Rev.0E-3",TT_Task,"55902",-,-,-,100,TK_Complete,18/06/2021,18/06/2021,30/06/2021,30/06/2021,"SP--B--2-61 SS","SP--B--2-61","SI--B--2A55 SS","SI--B--2A55",45,45,47,47,10,10,11,11,18,,"HK1003 -Blackpoint D2 - Rev.0E DD30092021"
1-3482,SI20BRU3-26,"DETAIL DESIGN / MANUFACTURING / SHOP TEST AC-DC CONVERTER BUK",5121,"HK1003-Rev.0E-3",TT_Task,"55902",-,-,-,0,TK_NotStart,12/10/2021,,16/01/2022,,"SI20BUK2-85 FS","SI20BUK2-85","SI20BTL4-11 FS","SI20BTL4-11",62,,76,,14,,17,,33,688,"HK1003 -Blackpoint D2 - Rev.0E DD30092021"
1-3483,SI20BTL4-11,"TRANSPORT TO WORKSHOP AC-DC CONVERTER BUK (TO ST. INGBERT-INSTALL INTO ELECTRICAL MODULES)",5121,"HK1003-Rev.0E-3",TT_Task,"55902",-,-,-,0,TK_NotStart,17/01/2022,,18/01/2022,,"SI20BRU3-26 FS","SI20BRU3-26","SI20UBA4-65 FS","SI20UBA4-65",76,,76,,17,,17,,46,688,"HK1003 -Blackpoint D2 - Rev.0E DD30092021"
1-3484,SI20UBA3-89,"(RFS) READY FOR SHIPMENT TESTED I&C CUBICLES FOR 20UBA1110/20",5121,"HK1003-Rev.0E-3",TT_FinMile,"55902",-,-,-,0,TK_NotStart,12/01/2022,,12/01/2022,,"SI20UBA3-88 FS","SI20UBA3-88","SI20UBA4-68 FS,SI20UBA3B78 FS","SI20UBA4-68,SI20UBA3B78",75,,75,,17,,17,,45,1064,"HK1003 -Blackpoint D2 - Rev.0E DD30092021"
1-3485,SI20UBA4-68,"TRANSPORT I&C CUBICLES TO ELECTRICAL MODULES MANUFACTURER 20UBA1110/20",5121,"HK1003-Rev.0E-3",TT_Task,"55902",-,-,-,0,TK_NotStart,10/03/2022,,16/03/2022,,"SI20UBA3-89 FS","SI20UBA3-89","SI20UBA3G56 FS,SI20UBA4G56 FS","SI20UBA3G56,SI20UBA4G56",83,,84,,19,,19,,52,1064,"HK1003 -Blackpoint D2 - Rev.0E DD30092021"
1-3486,SI20UBA3-86,"TEST PREPARATION & ASSEMBLY I&C CUBICLES TEST FACILITY 20UBA1110/20",5121,"HK1003-Rev.0E-3",TT_Task,"55902",-,-,-,0,TK_NotStart,18/11/2021,,01/12/2021,,"SI20UBA4-66 FS","SI20UBA4-66","SI20UBA3-87 FS","SI20UBA3-87",67,,69,,15,,16,,39,1064,"HK1003 -Blackpoint D2 - Rev.0E DD30092021"
1-3487,SI20UBA4-66,"DELIVERY OF CUBICLES AND COMPONENTS FOR ASSEMBLY IN TEST FACILITY 20UBA1110/20",5121,"HK1003-Rev.0E-3",TT_FinMile,"55902",-,-,-,0,TK_NotStart,17/11/2021,,17/11/2021,,"SI20CJ-4-10 FS,SI20CHY4-11 FS","SI20CJ-4-10,SI20CHY4-11","SI20UBA3-86 FS","SI20UBA3-86",67,,67,,15,,15,,38,1064,"HK1003 -Blackpoint D2 - Rev.0E DD30092021"
1-3488,SI20UBA3-87,"PRECOMMISSIONING TEST I&C CUBICLES TEST FACILITY 20UBA1110/20",5121,"HK1003-Rev.0E-3",TT_Task,"55902",-,-,-,0,TK_NotStart,02/12/2021,,05/01/2022,,"SI20UBA3-86 FS","SI20UBA3-86","SI20UBA3-88 FS,SI20UBA3-91 SS","SI20UBA3-88,SI20UBA3-91",69,,74,,16,,17,,40,1064,"HK1003 -Blackpoint D2 - Rev.0E DD30092021"
1-3489,SI20UBA3-88,"CLEANING  AND PACKING I&C CUBICLES TEST FACILITY 20UBA1110/20",5121,"HK1003-Rev.0E-3",TT_Task,"55902",-,-,-,0,TK_NotStart,06/01/2022,,12/01/2022,,"SI20UBA3-87 FS","SI20UBA3-87","SI20UBA3-89 FS","SI20UBA3-89",74,,75,,17,,17,,44,1064,"HK1003 -Blackpoint D2 - Rev.0E DD30092021"
1-3490,SI20UBA3G56,"INSTALL. TESTED I&C CUBICLES., CABLING ELECTRICAL MODULES 20UBA1110/20",5121,"HK1003-Rev.0E-3",TT_Task,"55902",-,-,-,0,TK_NotStart,17/03/2022,,20/04/2022,,"SI20UBA4-68 FS,SI20UBA4G56 FS","SI20UBA4-68,SI20UBA4G56","SI20UBA3G57 FS","SI20UBA3G57",84,,89,,19,,20,,53,1064,"HK1003 -Blackpoint D2 - Rev.0E DD30092021"
1-3491,SI20UBA4B43,"LOGISTICS AND CUSTOMS PREPARATION ELECTRICAL MODULES 20UBA1110/20 (TO SITE)",5121,"HK1003-Rev.0E-3",TT_Task,"55902",-,-,-,0,TK_NotStart,26/08/2022,,22/09/2022,,"SI20UBA3B76 FS","SI20UBA3B76","SI20UBA3G88 FS","SI20UBA3G88",107,,111,,25,,26,,79,216,"HK1003 -Blackpoint D2 - Rev.0E DD30092021"
1-3492,SI20UBA3B76,"TIMES OF COMPLETION (FINAL DATA IN KANLOG) ELECTRICAL MODULES 20UBA1110/20",5121,"HK1003-Rev.0E-3",TT_FinMile,"55902",-,-,-,0,TK_NotStart,26/08/2022,,26/08/2022,,"SI20UBA3G55 FS","SI20UBA3G55","SI20UBA4B43 FS","SI20UBA4B43",107,,107,,25,,25,,79,216,"HK1003 -Blackpoint D2 - Rev.0E DD30092021"
1-3493,SI20UBA4G55,"TRANSPORT ELECTRICAL MODULES 20UBA1110/20 (TO SITE)",5121,"HK1003-Rev.0E-3",TT_Task,"55902",-,-,-,0,TK_NotStart,23/09/2022,,17/11/2022,,"SI20UBA3G88 FS","SI20UBA3G88","SI20UBA4C-6 FS","SI20UBA4C-6",111,,119,,26,,27,,81,216,"HK1003 -Blackpoint D2 - Rev.0E DD30092021"
1-3494,SI20UBA3G88,"(RFS) READY FOR SHIPMENT TO SITE ELECTRICAL MODULES 20UBA1110/1120 (TO SITE)",5121,"HK1003-Rev.0E-3",TT_FinMile,"55902",-,-,-,0,TK_NotStart,22/09/2022,,22/09/2022,,"SI20UBA4B43 FS","SI20UBA4B43","SI20UBA4G55 FS","SI20UBA4G55",111,,111,,26,,26,,81,216,"HK1003 -Blackpoint D2 - Rev.0E DD30092021"
1-3495,SI20UBA3G57,"PACKING / LOGISTICS PLANNING CABLING ELECTRICAL MODULES 20UBA1110/20",5121,"HK1003-Rev.0E-3",TT_Task,"55902",-,-,-,0,TK_NotStart,21/04/2022,,18/05/2022,,"SI20UBA3G56 FS","SI20UBA3G56","SI20UBA3G55 FF","SI20UBA3G55",89,,93,,20,,21,,58,1064,"HK1003 -Blackpoint D2 - Rev.0E DD30092021"
1-3496,SI20UBA4-69,"(ET4b) ELECTRICAL MODULES AT WORKSHOP READY FOR COMPONENT INSTALLATION 20UBA1110/20",5121,"HK1003-Rev.0E-3",TT_Mile,"55902",-,-,-,0,TK_NotStart,16/06/2022,,16/06/2022,,"SI20UBA3L25 FS,SI20UBA2G78 FS","SI20UBA3L25,SI20UBA2G78","SI20UBA3G55 FS","SI20UBA3G55",97,,97,,22,,22,,70,216,"HK1003 -Blackpoint D2 - Rev.0E DD30092021"
1-3497,SI20UBA4G56,"(ET4a) I&C CUBICLES AT WORKSHOP READY FOR COMPONENT INSTALLATION 20UBA1110/20",5121,"HK1003-Rev.0E-3",TT_Mile,"55902",-,-,-,0,TK_NotStart,17/03/2022,,17/03/2022,,"SI20UBA4-68 FS","SI20UBA4-68","SI20UBA3G56 FS","SI20UBA3G56",84,,84,,19,,19,,53,1064,"HK1003 -Blackpoint D2 - Rev.0E DD30092021"
1-3498,SI20UBA2G78,"E-AND I&C- MANUALS FOR COMP.INSTALL.AVAILABLE ELECTRICAL MODULES 20UBA1110/20",5121,"HK1003-Rev.0E-3",TT_Mile,"55902",-,-,-,0,TK_NotStart,19/05/2022,,19/05/2022,,"SI20UBA3L25 SS","SI20UBA3L25","SI20UBA4-69 FS","SI20UBA4-69",93,,93,,21,,21,,65,216,"HK1003 -Blackpoint D2 - Rev.0E DD30092021"
1-3499,SI20MKW4-41,"TRANSPORT  SEAL OIL TANK TO MODULE SKIDDER 20MKW",5121,"HK1003-Rev.0E-3",TT_Task,"55902",-,-,-,0,TK_NotStart,29/10/2021,,23/12/2021,,"SP20MKW3-91 FS","SP20MKW3-91","SI20---3B10 FS","SI20---3B10",64,,72,,15,,16,,36,352,"HK1003 -Blackpoint D2 - Rev.0E DD30092021"
1-3500,SP20MKW4-11,"LOGISTICS AND CUSTOMS PREPARATION SEAL OIL TANK",5121,"HK1003-Rev.0E-3",TT_Task,"55902",-,-,-,0,TK_NotStart,01/10/2021,,28/10/2021,,"SP20MKW3-90 FS","SP20MKW3-90","SP20MKW3-91 FS","SP20MKW3-91",60,,64,,14,,15,,31,352,"HK1003 -Blackpoint D2 - Rev.0E DD30092021"
1-3501,SP20MKW3-90,"TIMES OF COMPLETION (FINAL DATA IN KANLOG) SEAL OIL TANK",5121,"HK1003-Rev.0E-3",TT_Mile,"55902",-,-,-,0,TK_NotStart,01/10/2021,,01/10/2021,,"SP20MKW3-89 SS","SP20MKW3-89","SP20MKW4-11 FS","SP20MKW4-11",60,,60,,14,,14,,31,352,"HK1003 -Blackpoint D2 - Rev.0E DD30092021"
1-3502,SP20MKW3-91,"(RFS) READY FOR SHIPMENT (NORTH SEA PORT) SEAL OIL TANK",5121,"HK1003-Rev.0E-3",TT_FinMile,"55902",-,-,-,0,TK_NotStart,28/10/2021,,28/10/2021,,"SP20MKW4-11 FS","SP20MKW4-11","SI20MKW4-41 FS","SI20MKW4-41",64,,64,,15,,15,,36,352,"HK1003 -Blackpoint D2 - Rev.0E DD30092021"
1-3503,SI20PAH4-42,"(OTD-OS) ARRIVAL ON SITE CONDENSER TUBE CLEANING SYSTEM 20PAH  (REMAINING SYSTEM)",5121,"HK1003-Rev.0E-3",TT_FinMile,"55902",-,-,-,0,TK_NotStart,05/08/2022,,05/08/2022,,"SI20PAH4-41 FS,SI20MAG4-25 FS","SI20PAH4-41,SI20MAG4-25","SI20PAH6-15 FS","SI20PAH6-15",104,,104,,24,,24,,76,520,"HK1003 -Blackpoint D2 - Rev.0E DD30092021"
1-3504,SI20PAH4-41,"TRANSPORT TO SITE CONDENSER TUBE CLEANING SYSTEM  (REMAINING SYSTEM) 20PAH",5121,"HK1003-Rev.0E-3",TT_Task,"55902",-,-,-,0,TK_NotStart,11/06/2022,,05/08/2022,,"SI20PAH3-81 FS","SI20PAH3-81","SI20PAH4-42 FS","SI20PAH4-42",97,,104,,22,,24,,69,520,"HK1003 -Blackpoint D2 - Rev.0E DD30092021"
1-3505,SI20PAH3-81,"(RFS) READY FOR SHIPMENT CONDENSER TUBE CLEANING SYSTEM 20PAH   (REMAINING SYSTEM)",5121,"HK1003-Rev.0E-3",TT_FinMile,"55902",-,-,-,0,TK_NotStart,10/06/2022,,10/06/2022,,"SI20PAH4B11 FS","SI20PAH4B11","SI20PAH4-41 FS","SI20PAH4-41",96,,96,,22,,22,,69,520,"HK1003 -Blackpoint D2 - Rev.0E DD30092021"
1-3506,SI20PAH4B11,"LOGISTICS AND CUSTOMS PREPARATION CONDENSER TUBE CLEANING SYSTEM 20PAH  (REMAINING SYSTEM)",5121,"HK1003-Rev.0E-3",TT_Task,"55902",-,-,-,0,TK_NotStart,14/05/2022,,10/06/2022,,"SI20PAH3B71 FS","SI20PAH3B71","SI20PAH3-81 FS","SI20PAH3-81",93,,96,,21,,22,,65,520,"HK1003 -Blackpoint D2 - Rev.0E DD30092021"
1-3507,SP20MAG4B41,"(OTD-OS) ON SITE CONDENSER MAG",5121,"HK1003-Rev.0E-3",TT_FinMile,"55902",-,-,-,0,TK_NotStart,17/05/2022,,17/05/2022,,"SI20MAG4-25 FS","SI20MAG4-25","SI20MAG6-61 FS","SI20MAG6-61",93,,93,,21,,21,,65,144,"HK1003 -Blackpoint D2 - Rev.0E DD30092021"
1-3508,SI20PAH3B71,"TIMES OF COMPLETION (FINAL DATA IN KANLOG) CONDENSER TUBE CLEANING SYSTEM 20PAH  (REMAINING SYSTEM)",5121,"HK1003-Rev.0E-3",TT_FinMile,"55902",-,-,-,0,TK_NotStart,26/12/2021,,26/12/2021,,"SI20PAH3-26 FS","SI20PAH3-26","SI20PAH4B11 FS","SI20PAH4B11",73,,73,,17,,17,,43,1624,"HK1003 -Blackpoint D2 - Rev.0E DD30092021"
1-3509,SI20BZP7-171,"ERECTION CABLE TRAYS BEFORE LIFTING OF MODULE 20UEY02",5121,"HK1003-Rev.0E-3",TT_Task,"55902",-,-,-,0,TK_NotStart,14/06/2022,,27/06/2022,,"SI--PEE7-20 FS,SI--BZP2-05 FS,SI--BZP4B40 FS,SI--2227-68 FS,SI20BZP7-173 FS,SI20BZP7-26 FS,SI--PEE7-20 SS","SI--PEE7-20,SI--BZP2-05,SI--BZP4B40,SI--2227-68,SI20BZP7-173,SI20BZP7-26,SI--PEE7-20","SI20UEY6-85 FS,SI20UEY6-85 FF,SI20UEY6-85 SS,SI20BZP7B10# FF,SI20BZP7B10# SS,SI20BZK7B48 FS","SI20UEY6-85,SI20UEY6-85,SI20UEY6-85,SI20BZP7B10#,SI20BZP7B10#,SI20BZK7B48",97,,99,,22,,23,,69,1208,"HK1003 -Blackpoint D2 - Rev.0E DD30092021"
1-3510,SI20BZP7D19,"FINALIZE CABLE TRAYS ON 20UEY02",5121,"HK1003-Rev.0E-3",TT_Task,"55902",-,-,-,0,TK_NotStart,08/07/2022,,14/07/2022,,"SI20UEY6-85 FS,SI20UEY6-90 FS","SI20UEY6-85,SI20UEY6-90","SI20BZK7-187 FS,SI20MAA7A15 FS,SI20MAG7A15 FS,SI20MAJ7A15 FS,SI20MAL7A15 FS,SI20MAN7H15 FS,SI20MAV7H15 FS,SI20MAW7H15 FS,SI20MAX7H15 FS,SI20MB-7H15 FS,SI20MB-7J15 FS,SI20MBQ7H15 FS,SI20LBA7H15 FS,SI20LBA7H16 FS,SI20LBA7J15 FS,SI20LBA7J16 FS,SI20LBB7J15 FS,SI20LBB7J17 FS,SI20LBG7A17 FS,SI20LBG7A15 FS,SI20LAB7H15 FS,SI20LCA7A15 FS,SI20LCL7A15 FS,SI20LCW7H15 FS,SI20LDK7H16 FS,SI20EK-7H15 FS,SI20EK-7I15 FS,SI20PAB7A15 FS,SI20PAH7H15 FS,SI20PAR7A16 FS,SI20PCB7H15 FS,SI20PGB7H15 FS,SI20GHC7H15 FS,SI20GHC7H17 FS,SI20GHD7H15 FS,SI20QFB7H15 FS,SI20QU-7H15 FS,SI20BZK7B33 FS,SI20GHC6H17 FS","SI20BZK7-187,SI20MAA7A15,SI20MAG7A15,SI20MAJ7A15,SI20MAL7A15,SI20MAN7H15,SI20MAV7H15,SI20MAW7H15,SI20MAX7H15,SI20MB-7H15,SI20MB-7J15,SI20MBQ7H15,SI20LBA7H15,SI20LBA7H16,SI20LBA7J15,SI20LBA7J16,SI20LBB7J15,SI20LBB7J17,SI20LBG7A17,SI20LBG7A15,SI20LAB7H15,SI20LCA7A15,SI20LCL7A15,SI20LCW7H15,SI20LDK7H16,SI20EK-7H15,SI20EK-7I15,SI20PAB7A15,SI20PAH7H15,SI20PAR7A16,SI20PCB7H15,SI20PGB7H15,SI20GHC7H15,SI20GHC7H17,SI20GHD7H15,SI20QFB7H15,SI20QU-7H15,SI20BZK7B33,SI20GHC6H17",100,,101,,23,,23,,73,1168,"HK1003 -Blackpoint D2 - Rev.0E DD30092021"
1-3511,SI20BZP7-172,"ERECTION LOOSE STEEL SUPPORTS FOR CABLE TRAYS BEFORE LIFTING OF MODULE 20UEY01",5121,"HK1003-Rev.0E-3",TT_Task,"55902",-,-,-,0,TK_NotStart,10/05/2022,,23/05/2022,,"SI--PEE7-20 FS,SI--BZP2-05 FS,SI--2227-68 FS,SI20UEY4-131 FS","SI--PEE7-20,SI--BZP2-05,SI--2227-68,SI20UEY4-131","SI20BZP7-75 FS,SI20BZK7-190 FS,SI20UEY6-116 SS,SI20BZP7-173 FS","SI20BZP7-75,SI20BZK7-190,SI20UEY6-116,SI20BZP7-173",92,,94,,21,,22,,64,1208,"HK1003 -Blackpoint D2 - Rev.0E DD30092021"
1-3512,SI20BZP7-173,"ERECTION LOOSE STEEL SUPPORTS FOR CABLE TRAYS BEFORE LIFTING OF MODULE 20UEY02",5121,"HK1003-Rev.0E-3",TT_Task,"55902",-,-,-,0,TK_NotStart,31/05/2022,,13/06/2022,,"SI--PEE7-20 FS,SI--BZP2-05 FS,SI--2227-68 FS,SI20UEY4-131 FS,SI20UEY4-132 FS,SI20BZP7-172 FS","SI--PEE7-20,SI--BZP2-05,SI--2227-68,SI20UEY4-131,SI20UEY4-132,SI20BZP7-172","SI20BZP7-171 FS,SI20UEY6-117 FF,SI20UEY6-117 SS","SI20BZP7-171,SI20UEY6-117,SI20UEY6-117",95,,97,,22,,22,,67,1208,"HK1003 -Blackpoint D2 - Rev.0E DD30092021"
1-3513,SI--2222-133,"NOISE PROTECTION CONCEPT REVIEW / COMMENTS BY CUSTOMER",5121,"HK1003-Rev.0E-3",TT_Task,"55902",-,-,-,100,TK_Complete,02/03/2021,02/03/2021,26/03/2021,26/03/2021,"SI--2222-70 FS,SI--2222-71 FS","SI--2222-70,SI--2222-71","SI--2222-134 FS","SI--2222-134",30,30,33,33,7,7,7,7,5,,"HK1003 -Blackpoint D2 - Rev.0E DD30092021"
1-3514,SI--2222-134,"NOISE PROTECTION CONCEPT FINALISATION",5121,"HK1003-Rev.0E-3",TT_Task,"55902",-,-,-,100,TK_Complete,27/03/2021,27/03/2021,10/04/2021,10/04/2021,"SI--2222-133 FS","SI--2222-133","SI--PM-2-30 FS","SI--PM-2-30",34,34,36,36,7,7,8,8,7,,"HK1003 -Blackpoint D2 - Rev.0E DD30092021"
1-3515,SI--SG-2-90,"FIRE PROTECTION CONCEPT FOR CLIENT REVIEW",5121,"HK1003-Rev.0E-3",TT_Task,"55902",-,-,-,100,TK_Complete,20/04/2021,20/04/2021,14/05/2021,14/05/2021,"SI--SG-2-30 FS,SI-----1-05 FS,SI--SG-2-106 FS","SI--SG-2-30,SI-----1-05,SI--SG-2-106","SI--SG-2-91 FS,SI-P222-65 FS,SI-P222-158 FS","SI--SG-2-91,SI-P222-65,SI-P222-158",37,37,40,40,8,8,9,9,9,,"HK1003 -Blackpoint D2 - Rev.0E DD30092021"
1-3516,SI--SG-2-91,"UPDATED FIRE PROTECTION CONCEPT AFTER ALIGNMENT WITH CLIENT",5121,"HK1003-Rev.0E-3",TT_Task,"55902",-,-,-,100,TK_Complete,15/05/2021,15/05/2021,21/05/2021,21/05/2021,"SI--SG-2-90 FS","SI--SG-2-90","SI--SG-2-92 FS","SI--SG-2-92",41,41,41,41,9,9,9,9,12,,"HK1003 -Blackpoint D2 - Rev.0E DD30092021"
1-3517,SI--SG-2-92,"FIRE PROTECTION CONCEPT FOR FSD APPROVAL",5121,"HK1003-Rev.0E-3",TT_Task,"55902",-,-,-,100,TK_Complete,22/05/2021,22/05/2021,29/05/2021,29/05/2021,"SI--SG-2-91 FS","SI--SG-2-91","SI--SG-2-93 FS,SI-P222-65 FS,SI-P222-158 FF","SI--SG-2-93,SI-P222-65,SI-P222-158",42,42,43,43,9,9,10,10,13,,"HK1003 -Blackpoint D2 - Rev.0E DD30092021"
1-3518,SI--SG-2-93,"UPDATED FIRE PROTECTION CONCEPT AFTER ALIGNMENT WITH FSD",5121,"HK1003-Rev.0E-3",TT_Task,"55902",-,-,-,100,TK_Complete,30/05/2021,30/05/2021,05/06/2021,05/06/2021,"SI--SG-2-92 FS","SI--SG-2-92","SI--SG-2-40 FS","SI--SG-2-40",43,43,44,44,10,10,10,10,15,,"HK1003 -Blackpoint D2 - Rev.0E DD30092021"
1-3519,SI--SG-2-94,"UPDATE FIRE MAIN RING MAIN P&ID's",5121,"HK1003-Rev.0E-3",TT_Task,"55902",-,-,-,100,TK_Complete,03/03/2021,03/03/2021,16/03/2021,16/03/2021,"SI--SG-2-23 FS","SI--SG-2-23","SI--SG-2-25 FS","SI--SG-2-25",30,30,32,32,7,7,7,7,5,,"HK1003 -Blackpoint D2 - Rev.0E DD30092021"
1-3520,SI--UE-2E36,"(C) BASIC DESIGN PLANT LAYOUT DWGS (UE) FUEL GAS AREA  AVAILABLE",5121,"HK1003-Rev.0E-3",TT_FinMile,"55902",-,-,-,100,TK_Complete,16/04/2021,16/04/2021,16/04/2021,16/04/2021,"SI--UEN2-40 FS,SI--UEN-2-46 FS,SI--UEN-2-46 FF","SI--UEN2-40,SI--UEN-2-46,SI--UEN-2-46","SI20UZJ2-81 FS,SI--PM-2-30 FS,SI--UE-2E37 FS,SI--PEM6-20& FS,SI--2222-141 FS,SI-P222-158 FS,SI-P222-175 FS","SI20UZJ2-81,SI--PM-2-30,SI--UE-2E37,SI--PEM6-20&,SI--2222-141,SI-P222-158,SI-P222-175",36,36,36,36,8,8,8,8,9,,"HK1003 -Blackpoint D2 - Rev.0E DD30092021"
1-3521,SI--UE2-86,"(MS2) DESIGN LOAD DATA, DIMENSIONS CLEAN & DIRTY OIL TANK AREA  AVAILABLE",5121,"HK1003-Rev.0E-3",TT_FinMile,"55902",-,-,-,100,TK_Complete,22/02/2021,22/02/2021,22/02/2021,22/02/2021,"SI-----1-05 FS","SI-----1-05","SI--UE2-E37 FS,SI--UE-2-47 FS","SI--UE2-E37,SI--UE-2-47",29,29,29,29,6,6,6,6,5,,"HK1003 -Blackpoint D2 - Rev.0E DD30092021"
1-3522,SI--UE2-E37,"(C) BASIC DESIGN PLANT LAYOUT DWGS (UE) CLEAN & DIRTY OIL TANK AREA  AVAILABLE",5121,"HK1003-Rev.0E-3",TT_FinMile,"55902",-,-,-,100,TK_Complete,16/04/2021,16/04/2021,16/04/2021,16/04/2021,"SI--UE2-86 FS,SI--UE-2-47 FS","SI--UE2-86,SI--UE-2-47","SI20UZJ2-81 FS,SI--UE2-E38 FS,SI--2222-141 FS,SI-P222-158 FS,SI-P222-175 FS,SI20UBY2-57 FS,SI20UBY2-65 FS","SI20UZJ2-81,SI--UE2-E38,SI--2222-141,SI-P222-158,SI-P222-175,SI20UBY2-57,SI20UBY2-65",36,36,36,36,8,8,8,8,9,,"HK1003 -Blackpoint D2 - Rev.0E DD30092021"
1-3523,SI-P222-62,"65 - CONSTRUCTION APPROVAL (CA) APPLICATION",5121,"HK1003-Rev.0E-3",TT_Task,"55902",-,-,-,0,TK_NotStart,05/10/2021,,03/12/2021,,"SI-----5-20 FS,SI--EK-2-90 FS,SI--EK-2-89 FS,SI--EK-2-67 FS,SI20UEN2-12 SS,SI20UEN2-71 SS","SI-----5-20,SI--EK-2-90,SI--EK-2-89,SI--EK-2-67,SI20UEN2-12,SI20UEN2-71","SI20UEN5-05.00 FS,SI20UEN5-19.00 FS","SI20UEN5-05.00,SI20UEN5-19.00",61,,69,,14,,16,,31,456,"HK1003 -Blackpoint D2 - Rev.0E DD30092021"
1-3524,SI-P222-63,"66 - USE APPROVAL (UA) APPLICATION",5121,"HK1003-Rev.0E-3",TT_Task,"55902",-,-,-,0,TK_NotStart,22/01/2023,,21/04/2023,,"SI-----1-05 FS,SI-P222-154 FS","SI-----1-05,SI-P222-154","SI20EK-8-97 SS,SI20EK-8-25 FS,SI20EK-8-99 FS","SI20EK-8-97,SI20EK-8-25,SI20EK-8-99",129,,141,,30,,33,,89,264,"HK1003 -Blackpoint D2 - Rev.0E DD30092021"
1-3525,SI-P222-64,"67 - PILOT SCHEME FOR COOLING TOWER APPROVED TO EMSD",5121,"HK1003-Rev.0E-3",TT_Task,"55902",-,-,-,100,TK_Complete,16/05/2021,16/05/2021,14/07/2021,14/07/2021,"SI-----1-05 FS,SI-P222-155 FS","SI-----1-05,SI-P222-155","SI-----1-09 FS,SI20PAD3-86 FF","SI-----1-09,SI20PAD3-86",41,41,49,49,9,9,11,11,13,,"HK1003 -Blackpoint D2 - Rev.0E DD30092021"
1-3526,SI-P222-65,"68 - HELPDESK SUBMISSION OF CONCEPTUAL DESIGN",5121,"HK1003-Rev.0E-3",TT_Task,"55902",-,-,-,100,TK_Complete,15/06/2021,15/06/2021,14/07/2021,14/07/2021,"SI-----1-05 FS,SI--SG-2-92 FS,SI--SG-2-90 FS","SI-----1-05,SI--SG-2-92,SI--SG-2-90","SI-P222-66 SS,SI-P222-72 SS,SI-P222-73 SS,SI-P222-74 SS,SI-P222-75 SS,SI-P222-76 SS,SI-----1-09 SS,SI20SGA6-15 FS,SI20SGA6A26 FS,SI20SGA6A27 FS,SI20SGC6-15 FS,SI20SGC6J15 FS,SI20SGC6J16 FS,SI20SGC6J17 FS,SI20SGC6J18 FS,SI20SGC6J20 FS,SI20SGC6J21 FS,SI20SGC6J22 FS,SI20SGC6J23 FS,SI20SGC6J24 FS,SI20SGC6J25 FS,SI20SGC6J26 FS,SI20SGC6J27 FS,SI20SGC6J28 FS,SI20SGE6E15 FS,SI20SGJ6-16 FS,SI20SGJ6-5 FS,SI20SGJ6A15 FS,SI20SGM6-15 FS,SI20SGM6-17 FS,SI20SGM6-18 FS,SI20SGM6-20 FS,SI20SGM6-21 FS,SI20SGY6-15 FS,SI20SGY6-22 FS,SI20SGY7-15 FS,SI20SGY7-17 FS,SI20SGY7-18 FS,SI20SGY7-19 FS,SI20SGY7A15 FS,SI20SGY7A16 FS,SI20SGY7A17 FS,SI20SGY7A18 FS,SI20SGY7A19 FS,SI20SGY7A20 FS,SI20SGY7A21 FS,SI20SGY7A22 FS,SI20SGY7A23 FS,SI20SGY7A24 FS,SI20SGY7A25 FS,SI20SGY7A26 FS,SI20SGY7A27 FS,SI20SGY7A28 FS,SI20SGY7A29 FS,SI20SGY7A30 FS,SI20SGY7A31 FS","SI-P222-66,SI-P222-72,SI-P222-73,SI-P222-74,SI-P222-75,SI-P222-76,SI-----1-09,SI20SGA6-15,SI20SGA6A26,SI20SGA6A27,SI20SGC6-15,SI20SGC6J15,SI20SGC6J16,SI20SGC6J17,SI20SGC6J18,SI20SGC6J20,SI20SGC6J21,SI20SGC6J22,SI20SGC6J23,SI20SGC6J24,SI20SGC6J25,SI20SGC6J26,SI20SGC6J27,SI20SGC6J28,SI20SGE6E15,SI20SGJ6-16,SI20SGJ6-5,SI20SGJ6A15,SI20SGM6-15,SI20SGM6-17,SI20SGM6-18,SI20SGM6-20,SI20SGM6-21,SI20SGY6-15,SI20SGY6-22,SI20SGY7-15,SI20SGY7-17,SI20SGY7-18,SI20SGY7-19,SI20SGY7A15,SI20SGY7A16,SI20SGY7A17,SI20SGY7A18,SI20SGY7A19,SI20SGY7A20,SI20SGY7A21,SI20SGY7A22,SI20SGY7A23,SI20SGY7A24,SI20SGY7A25,SI20SGY7A26,SI20SGY7A27,SI20SGY7A28,SI20SGY7A29,SI20SGY7A30,SI20SGY7A31",45,45,49,49,10,10,11,11,17,,"HK1003 -Blackpoint D2 - Rev.0E DD30092021"
1-3527,SI-P222-66,"69 - SPRINKLER LOCAL APPLICATION",5121,"HK1003-Rev.0E-3",TT_Task,"55902",-,-,-,0,TK_NotStart,21/10/2022,,17/02/2023,,"SI-P222-65 SS,SI20SGC6J20 FS,SI20SGA6-15 FS,SI20BZP7-100 FS","SI-P222-65,SI20SGC6J20,SI20SGA6-15,SI20BZP7-100","SI20SGC8-37 FS,SI20SGJ8-21 FS,SI20SGY8A26 FS,SI-P222-67 SS,SI-P222-76 SS,SI-P222-75 SS,SI-P222-73 SS","SI20SGC8-37,SI20SGJ8-21,SI20SGY8A26,SI-P222-67,SI-P222-76,SI-P222-75,SI-P222-73",115,,132,,27,,31,,83,560,"HK1003 -Blackpoint D2 - Rev.0E DD30092021"
1-3528,SI-P222-67,"70 -  AFA DETECTION ALARM",5121,"HK1003-Rev.0E-3",TT_Task,"55902",-,-,-,0,TK_NotStart,22/10/2022,,20/12/2022,,"SI20SGY7A17 FS,SI20SGY7-19 FS,SI20SGY7A31 FS,SI20SGY7A15 FS,SI20SGY7A21 FS,SI20SGY7A22 FS,SI20SGY7A18 FS,SI20SGY7A20 FS,SI20SGY7A19 FS,SI20SGY7-15 FS,SI-P222-66 SS","SI20SGY7A17,SI20SGY7-19,SI20SGY7A31,SI20SGY7A15,SI20SGY7A21,SI20SGY7A22,SI20SGY7A18,SI20SGY7A20,SI20SGY7A19,SI20SGY7-15,SI-P222-66","SI20SGY8A26 FS","SI20SGY8A26",116,,124,,27,,29,,84,1424,"HK1003 -Blackpoint D2 - Rev.0E DD30092021"
1-3529,SI-P222-70,"73 - OVERALL FIRE WATER DEMAND MAXIMUM DEMAND CALCULATION",5121,"HK1003-Rev.0E-3",TT_Task,"55902",-,-,-,0,TK_NotStart,12/08/2022,,10/09/2022,,"SI-P222-156 FS","SI-P222-156","SI20SGC8-37 FS,SI20SGJ8-21 FS,SI20SGY8A26 FS","SI20SGC8-37,SI20SGJ8-21,SI20SGY8A26",105,,110,,24,,25,,77,1840,"HK1003 -Blackpoint D2 - Rev.0E DD30092021"
1-3530,SI-P222-72,"75 - INSPECTION PROCEDURES AND SEQUENCING (TESTING STANDARDS FOR ALL SYSTEMS)",5121,"HK1003-Rev.0E-3",TT_Task,"55902",-,-,-,0,TK_NotStart,12/08/2022,,10/09/2022,,"SI-P222-65 SS,SI-P222-156 FS","SI-P222-65,SI-P222-156","SI20SGC8-37 FS,SI20SGJ8-21 FS,SI20SGY8A26 FS","SI20SGC8-37,SI20SGJ8-21,SI20SGY8A26",105,,110,,24,,25,,77,1840,"HK1003 -Blackpoint D2 - Rev.0E DD30092021"
1-3531,SI-P222-73,"76 - HYDRAULIC SUBMISSION APPROVAL (FSI/314 SCHEMATIC DRAWINGS SUBMISSION)",5121,"HK1003-Rev.0E-3",TT_Task,"55902",-,-,-,0,TK_NotStart,21/10/2022,,19/11/2022,,"SI-P222-65 SS,SI-P222-66 SS","SI-P222-65,SI-P222-66","SI20SGC8-37 FS,SI20SGJ8-21 FS,SI20SGY8A26 FS","SI20SGC8-37,SI20SGJ8-21,SI20SGY8A26",115,,120,,27,,28,,83,1280,"HK1003 -Blackpoint D2 - Rev.0E DD30092021"
1-3532,SI-P222-74,"77 - FSI/314 SCHEMATIC DRAWINGS (VAC/AFA/FSI APPROVAL)",5121,"HK1003-Rev.0E-3",TT_Task,"55902",-,-,-,0,TK_NotStart,12/08/2022,,07/02/2023,,"SI-P222-65 SS,SI-P222-156 FS,SI-P222-156 FF","SI-P222-65,SI-P222-156,SI-P222-156","SI20SGC8-37 FS,SI20SGJ8-21 FS,SI20SGY8A26 FS","SI20SGC8-37,SI20SGJ8-21,SI20SGY8A26",105,,131,,24,,30,,77,640,"HK1003 -Blackpoint D2 - Rev.0E DD30092021"
1-3533,SI-P222-75,"78 - SEAWATER DIVERSION OF OUTDDOR FIRE HYDRANTS",5121,"HK1003-Rev.0E-3",TT_Task,"55902",-,-,-,0,TK_NotStart,21/10/2022,,19/11/2022,,"SI-P222-65 SS,SI-P222-66 SS","SI-P222-65,SI-P222-66","SI20SGC8-37 FS,SI20SGJ8-21 FS,SI20SGY8A26 FS","SI20SGC8-37,SI20SGJ8-21,SI20SGY8A26",115,,120,,27,,28,,83,1280,"HK1003 -Blackpoint D2 - Rev.0E DD30092021"
1-3534,SI-P222-77,"80 - LICENSE FOR STORAGE OF DANGEROUS GOODS",5121,"HK1003-Rev.0E-3",TT_Task,"55902",-,-,-,100,TK_Complete,16/06/2021,16/06/2021,14/08/2021,14/08/2021,"SI-P222-158 FS","SI-P222-158","SI20UTG2-30 FS,SI20UTG2-62 FS,SI20UTG2-70 FS,SI20UTG2-54 FS,SI20UTG2-78 FS,SI20UTG2-86 FS,SI20UTG2-46 FS,SI20UEX2-104 FS","SI20UTG2-30,SI20UTG2-62,SI20UTG2-70,SI20UTG2-54,SI20UTG2-78,SI20UTG2-86,SI20UTG2-46,SI20UEX2-104",45,45,54,54,10,10,12,12,17,,"HK1003 -Blackpoint D2 - Rev.0E DD30092021"
1-3535,SI-P222-78,"81- APPLICATION FOR STORAGE/USE/MANUF. OF DANGEROUS GOODS UNDER DG ORDINACE FOR ISSUANCE OF FIRE SAFETY REQUIREMENTS",5121,"HK1003-Rev.0E-3",TT_Task,"55902",-,-,-,0,TK_NotStart,09/10/2022,,06/01/2023,,"SI20UTG2S-40 FS,SI20UTG2S-140 FS,SI20UTG2S-120 FS,SI20UTG2S-60 FS,SI20UTG2S-100 FS,SI20UTG2S-80 FS,SI20UTG2S-38 FS,SI20UBF5B45 FS,SI20UBN5-20 FS,SI20UEX5B46 FS","SI20UTG2S-40,SI20UTG2S-140,SI20UTG2S-120,SI20UTG2S-60,SI20UTG2S-100,SI20UTG2S-80,SI20UTG2S-38,SI20UBF5B45,SI20UBN5-20,SI20UEX5B46","SI-P222-79 SS","SI-P222-79",114,,126,,26,,29,,83,3112,"HK1003 -Blackpoint D2 - Rev.0E DD30092021"
1-3536,SI-P222-79,"82 - DANGEROUS GOODS LICENSE INSPECTION APPLICATIONS",5121,"HK1003-Rev.0E-3",TT_Task,"55902",-,-,-,0,TK_NotStart,19/12/2022,,16/02/2023,,"SI-P222-78 SS,SI-----1-05 FS,SI-P222-157 FS","SI-P222-78,SI-----1-05,SI-P222-157","SI-----1-09 FS","SI-----1-09",124,,132,,29,,30,,87,2544,"HK1003 -Blackpoint D2 - Rev.0E DD30092021"
1-3537,SI-P222-80,"83 - REPORT OF COMPLIANCE",5121,"HK1003-Rev.0E-3",TT_Task,"55902",-,-,-,0,TK_NotStart,24/03/2023,,22/04/2023,,"SI-----1-05 FS,SI20EKG6I15 FS","SI-----1-05,SI20EKG6I15","SI20EK-8-25 FS,SI20EK-8-99 FS","SI20EK-8-25,SI20EK-8-99",137,,142,,32,,33,,93,256,"HK1003 -Blackpoint D2 - Rev.0E DD30092021"
1-3538,SI-P222-81,"84 - PRESSURE VESSELS (FOR CONSTRUCTION WORKS)",5121,"HK1003-Rev.0E-3",TT_Task,"55902",-,-,-,100,TK_Complete,01/07/2021,01/07/2021,29/08/2021,29/08/2021,"SI-P222-159 FS","SI-P222-159","SI20UHA5-05 FS","SI20UHA5-05",47,47,56,56,11,11,13,13,20,,"HK1003 -Blackpoint D2 - Rev.0E DD30092021"
1-3539,SI-P222-82,"85 - CERTIFICATES FOR LIFTING APPLIANCES, LIFTING GEARS",5121,"HK1003-Rev.0E-3",TT_Task,"55902",-,-,-,0,TK_NotStart,02/05/2022,,30/06/2022,,"SI20SMM6-15 FS,SI20SMM6-70 FS,SI20SMM6-71 SS,SI-P222-160 FS","SI20SMM6-15,SI20SMM6-70,SI20SMM6-71,SI-P222-160","SI-----1-09 FS","SI-----1-09",91,,99,,21,,23,,61,4392,"HK1003 -Blackpoint D2 - Rev.0E DD30092021"
1-3540,SI-P222-83,"86 - CERTIFICATES FOR BOILERS, PRESSURE VESSELS",5121,"HK1003-Rev.0E-3",TT_Task,"55902",-,-,-,0,TK_NotStart,22/01/2023,,22/03/2023,,"SI-----1-05 FS,SI-P222-161 FS,SI-P222-161 FF","SI-----1-05,SI-P222-161,SI-P222-161","SI20HAD8E25 FS,SI20HAD8F25 FS,SI20HAD8G25 FS","SI20HAD8E25,SI20HAD8F25,SI20HAD8G25",129,,137,,30,,32,,89,296,"HK1003 -Blackpoint D2 - Rev.0E DD30092021"
1-3541,SI-P222-84,"87 - NOTIFICATION OF CONSTRUCTION WORKS AND REGISTRATION OF WORKERS TO LD",5121,"HK1003-Rev.0E-3",TT_Task,"55902",-,-,-,100,TK_Complete,01/06/2021,01/06/2021,30/06/2021,30/06/2021,"SI--5552-85 FS,SI-P222-163 FS","SI--5552-85,SI-P222-163","SI20UBA5-7 FS,SI20UBF5-05 FS,SI20UBX5-05 FS,SI20UEY5-85 FS,SI20UEY5-105 FS,SI20UMC5B75 FS,SI20UMC5Z15 FS,SI20UMC5Z46 FS,SI20UGU5-76 FS,SI20UGU5-82 FS,SI20UBA5-45 FS,SI20UBA5-59 FS,SI20UBD5-55 FS,SI20UBA5C-5 FS,SI20UBA5-05 FS,SI20UMC6-10 FS,SI20UMC6A-25 FS,SI20UMC6A-10 FS,SI20UMC6B-10 FS,SI20UZ6A5 FS,SI20UMC6B-30 FS,SI20UMC6B-50 FS,SI20UMC6B-70 FS,SI20UHA6-10 FS,SI20UHA6B-10 FS,SI20UHW6A-10 FS,SI20UMY6B-10 FS,SI20UZ6A30 FS,SI20URA6-10 FS,SI20UEN610 FS,SI20UBF610 FS,SI20UEZ6A-5 FS,SI20UEZ6B-5 FS,SI20ULD6B10 FS,SI20UMY6B15 FS,SI20UVM6B20 FS,SI20UBD5-05 FS,SI20UBD5-60 FS,SI20UBH5-20 FS,SI20UBH5-23 FS,SI20UBY5-06 FS,SI20UBY5-49 FS,SI20UBY5-57 FS,SI20UBY4-53 FS,SI20UBY5-53 FS,SI20UBZ5-61 FS,SI20UBZ5-69 FS,SI20UBZ5-65 FS,SI20UBZ5-73 FS,SI20UEX2-75 FS,SI20UEY5-101 FS,SI20UEY5-06 FS,SI20UHA5-05 FS,SI20UHW5-20 FS,SI20UHX5-05 FS,SI20ULA5-05 FS,SI20UMX5-05 FS,SI20UMX5-06 FS,SI20UQX5-45 FS,SI20URA5-05 FS,SI20URA5-06 FS,SI20USX5-10 FS,SI20UTG5-10 FS,SI20UTG5-20 FS,SI20UTG5-30 FS,SI20UTG5-40 FS,SI20UTG5-50 FS,SI20UTG5-60 FS,SI20UVM5-05 FS,SI20UQZ5-158 FS,SI20UZJ5-60 FS,SI20UQZ5-154 FS,SI20UQY5-146 FS,SI20UQY5-150 FS,SI20UQY5-154 FS,SI20UTG5-70.00 FS,SI20UEN5-05.00 FS,SI20UBN5-5.00 FS,SI20UEN5-19.00 FS","SI20UBA5-7,SI20UBF5-05,SI20UBX5-05,SI20UEY5-85,SI20UEY5-105,SI20UMC5B75,SI20UMC5Z15,SI20UMC5Z46,SI20UGU5-76,SI20UGU5-82,SI20UBA5-45,SI20UBA5-59,SI20UBD5-55,SI20UBA5C-5,SI20UBA5-05,SI20UMC6-10,SI20UMC6A-25,SI20UMC6A-10,SI20UMC6B-10,SI20UZ6A5,SI20UMC6B-30,SI20UMC6B-50,SI20UMC6B-70,SI20UHA6-10,SI20UHA6B-10,SI20UHW6A-10,SI20UMY6B-10,SI20UZ6A30,SI20URA6-10,SI20UEN610,SI20UBF610,SI20UEZ6A-5,SI20UEZ6B-5,SI20ULD6B10,SI20UMY6B15,SI20UVM6B20,SI20UBD5-05,SI20UBD5-60,SI20UBH5-20,SI20UBH5-23,SI20UBY5-06,SI20UBY5-49,SI20UBY5-57,SI20UBY4-53,SI20UBY5-53,SI20UBZ5-61,SI20UBZ5-69,SI20UBZ5-65,SI20UBZ5-73,SI20UEX2-75,SI20UEY5-101,SI20UEY5-06,SI20UHA5-05,SI20UHW5-20,SI20UHX5-05,SI20ULA5-05,SI20UMX5-05,SI20UMX5-06,SI20UQX5-45,SI20URA5-05,SI20URA5-06,SI20USX5-10,SI20UTG5-10,SI20UTG5-20,SI20UTG5-30,SI20UTG5-40,SI20UTG5-50,SI20UTG5-60,SI20UVM5-05,SI20UQZ5-158,SI20UZJ5-60,SI20UQZ5-154,SI20UQY5-146,SI20UQY5-150,SI20UQY5-154,SI20UTG5-70.00,SI20UEN5-05.00,SI20UBN5-5.00,SI20UEN5-19.00",43,43,47,47,10,10,11,11,15,,"HK1003 -Blackpoint D2 - Rev.0E DD30092021"
1-3542,SI-P222-85,"88 - IMPORTATION OF WORKERS AND WORKING VISA APPLICATION TO IMMD",5121,"HK1003-Rev.0E-3",TT_Task,"55902",-,-,-,67,TK_Active,01/06/2021,01/06/2021,27/11/2021,,"SI-P222-162 FS","SI-P222-162","SI-----1-09 FS","SI-----1-09",43,43,69,,10,10,16,,15,6112,"HK1003 -Blackpoint D2 - Rev.0E DD30092021"
1-3543,SI-P222-76,"79 - EM LOCK (ELECTROMAGNETIC DOOR LOCK)",5121,"HK1003-Rev.0E-3",TT_Task,"55902",-,-,-,0,TK_NotStart,21/10/2022,,19/11/2022,,"SI-P222-65 SS,SI-P222-66 SS","SI-P222-65,SI-P222-66","SI20SGC8-37 FS,SI20SGJ8-21 FS,SI20SGY8A26 FS","SI20SGC8-37,SI20SGJ8-21,SI20SGY8A26",115,,120,,27,,28,,83,1280,"HK1003 -Blackpoint D2 - Rev.0E DD30092021"
1-3544,SI-P222-86,"89 - BILLING ACCOUNT FOR CONSTRUCTION WASTE DISPOSAL",5121,"HK1003-Rev.0E-3",TT_Task,"55902",-,-,-,100,TK_Complete,16/03/2021,16/03/2021,14/04/2021,14/04/2021,"SI-P222-162 SS","SI-P222-162","SI-P222-89 SS,SI-P222-87 FS,SI-P222-88 SS,SI-P222-91 SS,SI-P222-92 SS,SI-P222-164 FS","SI-P222-89,SI-P222-87,SI-P222-88,SI-P222-91,SI-P222-92,SI-P222-164",32,32,36,36,7,7,8,8,6,,"HK1003 -Blackpoint D2 - Rev.0E DD30092021"
1-3545,SI-P222-87,"90 - CONSTRUCTION NOISE PERMIT",5121,"HK1003-Rev.0E-3",TT_Task,"55902",-,-,-,100,TK_Complete,02/06/2021,02/06/2021,01/07/2021,01/07/2021,"SI-P222-86 FS,SI--5552-85 FS,SI-P222-164 FS","SI-P222-86,SI--5552-85,SI-P222-164","SI-P222-89 SS,SI20UMC5Z15 FF,SI20UMC5Z46 FS,SI20UMC5B75 FS","SI-P222-89,SI20UMC5Z15,SI20UMC5Z46,SI20UMC5B75",43,43,47,47,10,10,11,11,15,,"HK1003 -Blackpoint D2 - Rev.0E DD30092021"
1-3546,SI-P222-88,"91 - WASTE WATER DISCHARGE LICENSE",5121,"HK1003-Rev.0E-3",TT_Task,"55902",-,-,-,100,TK_Complete,09/04/2021,09/04/2021,07/06/2021,07/06/2021,"SI-P222-86 SS","SI-P222-86","SI20UMC5Z15 FS,SI20UMC5Z46 FS,SI20UMC5B75 FS","SI20UMC5Z15,SI20UMC5Z46,SI20UMC5B75",35,35,44,44,8,8,10,10,8,,"HK1003 -Blackpoint D2 - Rev.0E DD30092021"
1-3547,SI-P222-89,"92 - WASTE CHEMICAL DISPOSAL",5121,"HK1003-Rev.0E-3",TT_Task,"55902",-,-,-,100,TK_Complete,02/06/2021,02/06/2021,31/07/2021,31/07/2021,"SI-P222-86 SS,SI-P222-87 SS,SI-P222-164 FS","SI-P222-86,SI-P222-87,SI-P222-164","SI-----1-09 FS,SI20UMC5B75 FS","SI-----1-09,SI20UMC5B75",43,43,52,52,10,10,12,12,15,,"HK1003 -Blackpoint D2 - Rev.0E DD30092021"
1-3548,SI-P222-91,"94 - SITE SUPERVISION PLANS UNDER AP/RSE/RGE STREAMS",5121,"HK1003-Rev.0E-3",TT_Task,"55902",-,-,-,100,TK_Complete,02/06/2021,02/06/2021,22/06/2021,22/06/2021,"SI-P222-86 SS,SI-P222-164 FS","SI-P222-86,SI-P222-164","SI-----1-09 FS","SI-----1-09",43,43,46,46,10,10,10,10,15,,"HK1003 -Blackpoint D2 - Rev.0E DD30092021"
1-3549,SI-P222-92,"95 - SITE SUPERVISION PLANS UNDER RGBC/RSC STREAM",5121,"HK1003-Rev.0E-3",TT_Task,"55902",-,-,-,100,TK_Complete,02/06/2021,02/06/2021,22/06/2021,22/06/2021,"SI-P222-86 SS,SI-P222-164 FS","SI-P222-86,SI-P222-164","SI-----1-09 FS","SI-----1-09",43,43,46,46,10,10,10,10,15,,"HK1003 -Blackpoint D2 - Rev.0E DD30092021"
1-3550,SI-P222-93,"96 - NOTICE OF COMMENCEMENT OF CONSTRUCTION WORKS (FORM1) TO CIC",5121,"HK1003-Rev.0E-3",TT_Task,"55902",-,-,-,100,TK_Complete,01/06/2021,01/06/2021,01/06/2021,01/06/2021,"SI-P222-165 FS","SI-P222-165","SI-----5-21& FS","SI-----5-21&",43,43,43,43,10,10,10,10,15,,"HK1003 -Blackpoint D2 - Rev.0E DD30092021"
1-3551,SI-P222-94,"97 - NOTICE OF INTERIM PAYMENT (FORM2) TO CIC",5121,"HK1003-Rev.0E-3",TT_Task,"55902",-,-,-,100,TK_Complete,01/06/2021,01/06/2021,01/06/2021,01/06/2021,"SI-P222-165 FS","SI-P222-165","SI-----1-09 FS,SI-----5-21& FS","SI-----1-09,SI-----5-21&",43,43,43,43,10,10,10,10,15,,"HK1003 -Blackpoint D2 - Rev.0E DD30092021"
1-3552,SI-P222-95,"98 - NOTICE OF FINAL PAYMENT (FORM2) TO CIC",5121,"HK1003-Rev.0E-3",TT_Task,"55902",-,-,-,100,TK_Complete,01/06/2021,01/06/2021,01/06/2021,01/06/2021,"SI-P222-165 FS","SI-P222-165","SI-----1-09 FS,SI-----5-21& FS","SI-----1-09,SI-----5-21&",43,43,43,43,10,10,10,10,15,,"HK1003 -Blackpoint D2 - Rev.0E DD30092021"
1-3553,SI-P222-96,"99 - NOTICE TO COMPLETION OF CONSTRUCTION WORKS (FORM3) TO CIC",5121,"HK1003-Rev.0E-3",TT_Task,"55902",-,-,-,0,TK_NotStart,31/12/2023,,31/12/2023,,"SI-P222-166 FS","SI-P222-166","SI-----1-09 FS","SI-----1-09",178,,178,,41,,41,,99,0,"HK1003 -Blackpoint D2 - Rev.0E DD30092021"
1-3554,SI-P222-97,"100 - NOTICE OF COMMENCEMENT OF CONSTRUCTION OPERATIONS (FORM1B) TO PCFB",5121,"HK1003-Rev.0E-3",TT_Task,"55902",-,-,-,100,TK_Complete,01/06/2021,01/06/2021,01/06/2021,01/06/2021,"SI-P222-165 FS","SI-P222-165","SI-----1-09 FS,SI-----5-21& FS","SI-----1-09,SI-----5-21&",43,43,43,43,10,10,10,10,15,,"HK1003 -Blackpoint D2 - Rev.0E DD30092021"
1-3555,SI-P222-98,"101 - NOTICE OF INTERIM PAYMENT (FORM2B) TO PCFB",5121,"HK1003-Rev.0E-3",TT_Task,"55902",-,-,-,100,TK_Complete,01/06/2021,01/06/2021,01/06/2021,01/06/2021,"SI-P222-165 FS","SI-P222-165","SI-----1-09 FS,SI-----5-21& FS","SI-----1-09,SI-----5-21&",43,43,43,43,10,10,10,10,15,,"HK1003 -Blackpoint D2 - Rev.0E DD30092021"
1-3556,SI-P222-99,"102 - NOTICE OF FINAL PAYMENT (FORM3B) TO PCFB",5121,"HK1003-Rev.0E-3",TT_Task,"55902",-,-,-,100,TK_Complete,01/06/2021,01/06/2021,01/06/2021,01/06/2021,"SI-P222-165 FS","SI-P222-165","SI-----1-09 FS,SI-----5-21& FS","SI-----1-09,SI-----5-21&",43,43,43,43,10,10,10,10,15,,"HK1003 -Blackpoint D2 - Rev.0E DD30092021"
1-3557,SI-P222-100,"103 - DESTINATION CONTROL STATEMENT: FIREWALL IMPORT LICENSE",5121,"HK1003-Rev.0E-3",TT_Task,"55902",-,-,-,0,TK_NotStart,20/12/2021,,19/01/2022,,"SI-----1-05 FS,SI-P222-167 FS","SI-----1-05,SI-P222-167","SI-----1-09 FS,SI20UBA4G58 FS,SI20UBA4G25 FS","SI-----1-09,SI20UBA4G58,SI20UBA4G25",72,,76,,16,,17,,43,1472,"HK1003 -Blackpoint D2 - Rev.0E DD30092021"
1-3558,SI-P222-101,"104 - LICENSE ISSUE",5121,"HK1003-Rev.0E-3",TT_Task,"55902",-,-,-,0,TK_NotStart,20/01/2022,,19/05/2022,,"SI-----1-05 FS,SI-P222-168 FS","SI-----1-05,SI-P222-168","SI-P222-102 SS,SI-P222-103 SS,SI20MKA4-40 FS","SI-P222-102,SI-P222-103,SI20MKA4-40",76,,93,,17,,21,,46,896,"HK1003 -Blackpoint D2 - Rev.0E DD30092021"
1-3559,SI-P222-102,"105 - IMPORT LICENSE FOR RADIOACTIVE SUBSTANCE",5121,"HK1003-Rev.0E-3",TT_Task,"55902",-,-,-,0,TK_NotStart,20/01/2022,,18/02/2022,,"SI-P222-101 SS,SI-----1-05 FS","SI-P222-101,SI-----1-05","SI-----1-09 FS,SI20BAT3-81 FS","SI-----1-09,SI20BAT3-81",76,,80,,17,,18,,46,1552,"HK1003 -Blackpoint D2 - Rev.0E DD30092021"
1-3560,SI-P222-103,"106 - RADIOACTIVE SUBSTANCE LICENSE (BPPS)",5121,"HK1003-Rev.0E-3",TT_Task,"55902",-,-,-,0,TK_NotStart,20/01/2022,,18/02/2022,,"SI-P222-101 SS,SI-----1-05 FS","SI-P222-101,SI-----1-05","SI-----1-09 FS,SI20BAT3-81 FS","SI-----1-09,SI20BAT3-81",76,,80,,17,,18,,46,1552,"HK1003 -Blackpoint D2 - Rev.0E DD30092021"
1-3561,SI-P222-104,"107 - WSD FORM 542 SUBMISSION (TOWN WATER DOMESTIC WATER SUPPLY)",5121,"HK1003-Rev.0E-3",TT_Task,"55902",-,-,-,59,TK_Active,16/06/2021,16/06/2021,12/12/2021,,"SI-----1-05 FS,SI-P222-169 FS","SI-----1-05,SI-P222-169","SI-P222-105 FS,SI-P222-111 SS,SI20TPM5A6-20 FS,SI20GKB6H16 FS","SI-P222-105,SI-P222-111,SI20TPM5A6-20,SI20GKB6H16",45,45,71,,10,10,16,,17,2400,"HK1003 -Blackpoint D2 - Rev.0E DD30092021"
1-3562,SI-P222-105,"108 - APPROVAL OF WSD FORM 542 SUBMISSION  (TOWN WATER DOMESTIC WATER SUPPLY)",5121,"HK1003-Rev.0E-3",TT_Task,"55902",-,-,-,0,TK_NotStart,13/12/2021,,13/12/2021,,"SI-P222-104 FS,SI-----1-05 FS","SI-P222-104,SI-----1-05","SI-----1-09 FS,SI-P222-106 FS,SI-P222-108 FS","SI-----1-09,SI-P222-106,SI-P222-108",71,,71,,16,,16,,42,2400,"HK1003 -Blackpoint D2 - Rev.0E DD30092021"
1-3563,SI-P222-106,"109 - WSD FORM 46 PART1/2  (TOWN WATER DOMESTIC WATER SUPPLY)",5121,"HK1003-Rev.0E-3",TT_Task,"55902",-,-,-,0,TK_NotStart,27/08/2022,,24/11/2022,,"SI-----1-05 FS,SI-P222-105 FS","SI-----1-05,SI-P222-105","SI-P222-107 FS,SI20GKB6H16 FS,SI20TPM5A6-20 FS","SI-P222-107,SI20GKB6H16,SI20TPM5A6-20",108,,120,,25,,28,,79,944,"HK1003 -Blackpoint D2 - Rev.0E DD30092021"
1-3564,SI-P222-107,"110 - WSD FORM 46 PART 3  (TOWN WATER DOMESTIC WATER SUPPLY)",5121,"HK1003-Rev.0E-3",TT_Task,"55902",-,-,-,0,TK_NotStart,25/11/2022,,25/11/2022,,"SI-P222-106 FS,SI-----1-05 FS","SI-P222-106,SI-----1-05","SI-----1-09 FS,SI20GKB6H16 FS,SI20TPM5A6-20 SS","SI-----1-09,SI20GKB6H16,SI20TPM5A6-20",120,,120,,28,,28,,85,944,"HK1003 -Blackpoint D2 - Rev.0E DD30092021"
1-3565,SI-P222-108,"111 - WSD FINAL AMENDMENT PLAN SUBMISSION  (TOWN WATER DOMESTIC WATER SUPPLY)",5121,"HK1003-Rev.0E-3",TT_Task,"55902",-,-,-,0,TK_NotStart,14/12/2021,,11/02/2022,,"SI-----1-05 FS,SI-P222-105 FS","SI-----1-05,SI-P222-105","SI-P222-109 FS","SI-P222-109",71,,79,,16,,18,,42,2400,"HK1003 -Blackpoint D2 - Rev.0E DD30092021"
1-3566,SI-P222-109,"112 - APPROVAL OF WSD FINAL AMENDMENT PLAN SUBMISSION (TOWN WATER DOMESTIC WATER SUPPLY)",5121,"HK1003-Rev.0E-3",TT_Task,"55902",-,-,-,0,TK_NotStart,12/02/2022,,12/02/2022,,"SI-P222-108 FS,SI-----1-05 FS","SI-P222-108,SI-----1-05","SI-P222-110 FS,SI-P222-178 FS","SI-P222-110,SI-P222-178",80,,80,,18,,18,,49,2400,"HK1003 -Blackpoint D2 - Rev.0E DD30092021"
1-3567,SI-P222-110,"113 - WSD FORM 46 PART 4  (TOWN WATER DOMESTIC WATER SUPPLY)",5121,"HK1003-Rev.0E-3",TT_Task,"55902",-,-,-,0,TK_NotStart,15/01/2023,,14/04/2023,,"SI-P222-109 FS,SI-----1-05 FS,SI-P222-178 FS","SI-P222-109,SI-----1-05,SI-P222-178","SI-P222-118 SS,SI-P222-111 FS","SI-P222-118,SI-P222-111",128,,140,,29,,32,,88,152,"HK1003 -Blackpoint D2 - Rev.0E DD30092021"
1-3568,SI-P222-111,"114 - WSD FORM 46 PART 5  (TOWN WATER DOMESTIC WATER SUPPLY)",5121,"HK1003-Rev.0E-3",TT_Task,"55902",-,-,-,0,TK_NotStart,15/04/2023,,13/06/2023,,"SI-P222-104 SS,SI-----1-05 FS,SI-P222-110 FS","SI-P222-104,SI-----1-05,SI-P222-110","SI-P222-138 FF","SI-P222-138",141,,149,,32,,34,,95,328,"HK1003 -Blackpoint D2 - Rev.0E DD30092021"
1-3569,SI-P222-112,"115 - WSD FORM 542 SUBMISSION  (TOWN WATER SERVICES SYSTEM)",5121,"HK1003-Rev.0E-3",TT_Task,"55902",-,-,-,59,TK_Active,16/06/2021,16/06/2021,12/12/2021,,"SI-P222-170 FS","SI-P222-170","SI-P222-113 FS","SI-P222-113",45,45,71,,10,10,16,,17,2536,"HK1003 -Blackpoint D2 - Rev.0E DD30092021"
1-3570,SI-P222-113,"116 - APPROVAL OF WSD FORM 542 SUBMISSION  (TOWN WATER SERVICES SYSTEM)",5121,"HK1003-Rev.0E-3",TT_Task,"55902",-,-,-,0,TK_NotStart,13/12/2021,,13/12/2021,,"SI-P222-112 FS","SI-P222-112","SI-----1-09 FS,SI-P222-114 FS,SI-P222-116 FS","SI-----1-09,SI-P222-114,SI-P222-116",71,,71,,16,,16,,42,2536,"HK1003 -Blackpoint D2 - Rev.0E DD30092021"
1-3571,SI-P222-114,"117 - WSD FORM 46 PART 1/2 (TOWN WATER SERVICES SYSTEM)",5121,"HK1003-Rev.0E-3",TT_Task,"55902",-,-,-,0,TK_NotStart,02/05/2022,,30/07/2022,,"SI-----1-05 FS,SI-P222-113 FS","SI-----1-05,SI-P222-113","SI-P222-115 FS","SI-P222-115",91,,104,,21,,24,,61,1424,"HK1003 -Blackpoint D2 - Rev.0E DD30092021"
1-3572,SI-P222-115,"118 - WSD FORM 46 PART 3  (TOWN WATER SERVICES SYSTEM)",5121,"HK1003-Rev.0E-3",TT_Task,"55902",-,-,-,0,TK_NotStart,31/07/2022,,31/07/2022,,"SI-P222-114 FS,SI-----1-05 FS,SI-P222-170 FS","SI-P222-114,SI-----1-05,SI-P222-170","SI20TPM6A6-20 FS,SI20GHD6I15 FS","SI20TPM6A6-20,SI20GHD6I15",104,,104,,24,,24,,76,1424,"HK1003 -Blackpoint D2 - Rev.0E DD30092021"
1-3573,SI-P222-116,"119 - WSD FINAL AMENDMENT PLAN SUBMISSION  (TOWN WATER SERVICES SYSTEM)",5121,"HK1003-Rev.0E-3",TT_Task,"55902",-,-,-,0,TK_NotStart,07/07/2022,,04/09/2022,,"SI-----1-05 FS,SI-P222-113 FS","SI-----1-05,SI-P222-113","SI-P222-117 FS","SI-P222-117",100,,109,,23,,25,,72,3856,"HK1003 -Blackpoint D2 - Rev.0E DD30092021"
1-3574,SI-P222-117,"120 - APPROVAL OF WSD FINAL AMENDMENT PLAN SUBMISSION  (TOWN WATER SERVICES SYSTEM)",5121,"HK1003-Rev.0E-3",TT_Task,"55902",-,-,-,0,TK_NotStart,05/09/2022,,05/09/2022,,"SI-P222-116 FS,SI-----1-05 FS","SI-P222-116,SI-----1-05","SI-----1-09 FS","SI-----1-09",109,,109,,25,,25,,80,3856,"HK1003 -Blackpoint D2 - Rev.0E DD30092021"
1-3575,SI-P222-118,"121 - WSD FORM 46 PART 4  (TOWN WATER SERVICES SYSTEM)",5121,"HK1003-Rev.0E-3",TT_Task,"55902",-,-,-,0,TK_NotStart,15/01/2023,,14/04/2023,,"SI-P222-110 SS,SI-----1-05 FS,SI-P222-178 FS","SI-P222-110,SI-----1-05,SI-P222-178","SI-P222-119 FS","SI-P222-119",128,,140,,29,,32,,88,152,"HK1003 -Blackpoint D2 - Rev.0E DD30092021"
1-3576,SI-P222-119,"122 - WSD FORM 46 PART 5  (TOWN WATER SERVICES SYSTEM)",5121,"HK1003-Rev.0E-3",TT_Task,"55902",-,-,-,0,TK_NotStart,15/04/2023,,13/06/2023,,"SI-----1-05 FS,SI-P222-118 FS","SI-----1-05,SI-P222-118","SI-----1-09 FS,SI-P222-127 SS","SI-----1-09,SI-P222-127",141,,149,,32,,34,,95,152,"HK1003 -Blackpoint D2 - Rev.0E DD30092021"
1-3577,SI-P222-120,"123 - WSD FORM 542 SUBMISSION (FRESH FIRE WATER SUPPLY)",5121,"HK1003-Rev.0E-3",TT_Task,"55902",-,-,-,24,TK_Active,18/08/2021,18/08/2021,13/02/2022,,"SI-----1-05 FS,SI-P222-171 FS","SI-----1-05,SI-P222-171","SI-P222-121 FS","SI-P222-121",54,54,80,,12,12,18,,26,1560,"HK1003 -Blackpoint D2 - Rev.0E DD30092021"
1-3578,SI-P222-121,"124 - APPROVAL OF WSD FORM 542 SUBMISSION (FRESH FIRE WATER SUPPLY)",5121,"HK1003-Rev.0E-3",TT_Task,"55902",-,-,-,0,TK_NotStart,14/02/2022,,14/02/2022,,"SI-P222-120 FS,SI-----1-05 FS","SI-P222-120,SI-----1-05","SI-----1-09 FS,SI-P222-122 FS","SI-----1-09,SI-P222-122",80,,80,,18,,18,,49,1560,"HK1003 -Blackpoint D2 - Rev.0E DD30092021"
1-3579,SI-P222-122,"125 - WSD FORM 46 PART 1/2 (FRESH FIRE WATER SUPPLY)",5121,"HK1003-Rev.0E-3",TT_Task,"55902",-,-,-,0,TK_NotStart,15/02/2022,,15/04/2022,,"SI-----1-05 FS,SI-P222-121 FS","SI-----1-05,SI-P222-121","SI-P222-123 FS","SI-P222-123",80,,88,,18,,20,,50,1560,"HK1003 -Blackpoint D2 - Rev.0E DD30092021"
1-3580,SI-P222-123,"126 - WSD FORM 46 PART 3 (FRESH FIRE WATER SUPPLY)",5121,"HK1003-Rev.0E-3",TT_Task,"55902",-,-,-,0,TK_NotStart,16/04/2022,,16/04/2022,,"SI-P222-122 FS,SI-----1-05 FS","SI-P222-122,SI-----1-05","SI-----1-09 FS,SI20TPF1A6-20 FS,SI20TPF1B6-20 FS,SI20TPF1C6-20 FS","SI-----1-09,SI20TPF1A6-20,SI20TPF1B6-20,SI20TPF1C6-20",89,,89,,20,,20,,58,1560,"HK1003 -Blackpoint D2 - Rev.0E DD30092021"
1-3581,SI-P222-124,"127 - WSD FINAL AMENDMENT PLAN SUBMISSION (FRESH FIRE WATER SUPPLY)",5121,"HK1003-Rev.0E-3",TT_Task,"55902",-,-,-,0,TK_NotStart,07/07/2022,,04/09/2022,,"SI-----1-05 FS","SI-----1-05","SI-P222-125 FS","SI-P222-125",100,,109,,23,,25,,72,1200,"HK1003 -Blackpoint D2 - Rev.0E DD30092021"
1-3582,SI-P222-125,"128 - APPROVAL OF WSD FINAL AMENDMENT PLAN SUBMISSION (FRESH FIRE WATER SUPPLY)",5121,"HK1003-Rev.0E-3",TT_Task,"55902",-,-,-,0,TK_NotStart,05/09/2022,,05/09/2022,,"SI-P222-124 FS,SI-----1-05 FS","SI-P222-124,SI-----1-05","SI-----1-09 FS,SI-P222-126 FS","SI-----1-09,SI-P222-126",109,,109,,25,,25,,80,1200,"HK1003 -Blackpoint D2 - Rev.0E DD30092021"
1-3583,SI-P222-126,"129 - WSD FORM 46 PART 4 (FRESH FIRE WATER SUPPLY)",5121,"HK1003-Rev.0E-3",TT_Task,"55902",-,-,-,0,TK_NotStart,30/12/2022,,29/03/2023,,"SI-----1-05 FS,SI-P222-125 FS,SI-P222-179 FS","SI-----1-05,SI-P222-125,SI-P222-179","SI-P222-127 FS","SI-P222-127",125,,138,,29,,32,,88,280,"HK1003 -Blackpoint D2 - Rev.0E DD30092021"
1-3584,SI-P222-127,"130 - WSD FORM 46 PART 5 (FRESH FIRE WATER SUPPLY)",5121,"HK1003-Rev.0E-3",TT_Task,"55902",-,-,-,0,TK_NotStart,15/04/2023,,13/06/2023,,"SI-----1-03 FS,SI-----1-05 FS,SI-P222-126 FS,SI-P222-119 SS","SI-----1-03,SI-----1-05,SI-P222-126,SI-P222-119","SI20HA-9A45 FS","SI20HA-9A45",141,,149,,32,,34,,95,152,"HK1003 -Blackpoint D2 - Rev.0E DD30092021"
1-3585,SI-P222-128,"131 - FORM BA14 - CERTIFICATE ON COMPLETION OF BUILDING WORKS (PILE FOUNDATION)",5121,"HK1003-Rev.0E-3",TT_Task,"55902",-,-,-,100,TK_Complete,31/05/2021,31/05/2021,29/06/2021,29/06/2021,"SI-----1-05 FS,CL-3335-80 FS","SI-----1-05,CL-3335-80","SI-----1-09 FS,SI20UBA5-7 FS,SI20UBF5-05 FS,SI20UBX5-05 FS,SI20UEY5-85 FS,SI20UEY5-105 FS,SI20UMC5B75 FS,SI20UMC5Z15 FS,SI20UMC5Z46 FS,SI20UGU5-76 FS,SI20UGU5-82 FS,SI20UBA5-45 FS,SI20UBA5-59 FS,SI20UBD5-55 FS,SI20UBA5C-5 FS,SI20UBA5-05 FS","SI-----1-09,SI20UBA5-7,SI20UBF5-05,SI20UBX5-05,SI20UEY5-85,SI20UEY5-105,SI20UMC5B75,SI20UMC5Z15,SI20UMC5Z46,SI20UGU5-76,SI20UGU5-82,SI20UBA5-45,SI20UBA5-59,SI20UBD5-55,SI20UBA5C-5,SI20UBA5-05",43,43,47,47,10,10,11,11,15,,"HK1003 -Blackpoint D2 - Rev.0E DD30092021"
1-3586,SI-P222-130,"133 - CERTIFICATE OF COMPLETION OF DRAIN TESTS",5121,"HK1003-Rev.0E-3",TT_Task,"55902",-,-,-,0,TK_NotStart,01/01/2023,,30/01/2023,,"SI-----1-05 FS,SI-P222-172 FS","SI-----1-05,SI-P222-172","SI20MB-9-15 FS","SI20MB-9-15",126,,130,,29,,30,,88,968,"HK1003 -Blackpoint D2 - Rev.0E DD30092021"
1-3587,SI-P222-133,"136 - FORM FSI/314 SUBMISSION OF AS-BUILT DWGS",5121,"HK1003-Rev.0E-3",TT_Task,"55902",-,-,-,0,TK_NotStart,02/01/2023,,31/01/2023,,"SI-----1-05 FS,SI20SGA6A27 FS,SI--SGM6-15 FS,SI20SGA6A27 FF,SI20SGA6A26 FS,SI20SGA6-15 FS,SI20SGJ6-5 FS,SI20SGE6E15 FS,SI20SGC6J28 FS,SI20SGC6J17 FS,SI20SGJ6-16 FS,SI20SGC6J27 FS,SI20SGC6J15 FS,SI20SGC6J20 FS,SI20SGM6-15 FS,SI20SGM6-20 FS,SI20SGC6J23 FS,SI20SGC6J25 FS,SI20SGC6-15 FS,SI20SGC6J22 FS,SI20SGC6J24 FS,SI20SGC6J26 FS,SI20SGM6-21 FS,SI20SGC6J21 FS,SI20SGC6J16 FS,SI20SGM6-18 FS,SI20SGC6J18 FS,SI20SGM6-17 FS,SI20TPF1A6-20 FS,SI20TPF1B6-20 FS,SI20TPF1C6-20 FS,SI20TPF1C6-25 FS,SI20TPF1B6-25 FS,SI20TPF1A6-25 FS,SI-P222-173 FS","SI-----1-05,SI20SGA6A27,SI--SGM6-15,SI20SGA6A27,SI20SGA6A26,SI20SGA6-15,SI20SGJ6-5,SI20SGE6E15,SI20SGC6J28,SI20SGC6J17,SI20SGJ6-16,SI20SGC6J27,SI20SGC6J15,SI20SGC6J20,SI20SGM6-15,SI20SGM6-20,SI20SGC6J23,SI20SGC6J25,SI20SGC6-15,SI20SGC6J22,SI20SGC6J24,SI20SGC6J26,SI20SGM6-21,SI20SGC6J21,SI20SGC6J16,SI20SGM6-18,SI20SGC6J18,SI20SGM6-17,SI20TPF1A6-20,SI20TPF1B6-20,SI20TPF1C6-20,SI20TPF1C6-25,SI20TPF1B6-25,SI20TPF1A6-25,SI-P222-173","SI-P222-134 SS","SI-P222-134",126,,130,,29,,30,,88,800,"HK1003 -Blackpoint D2 - Rev.0E DD30092021"
1-3588,SI-P222-134,"137 - FORM FS/314 SUBMISSION TO REQUEST FSD INSPECTION",5121,"HK1003-Rev.0E-3",TT_Task,"55902",-,-,-,0,TK_NotStart,02/01/2023,,15/01/2023,,"SI-----1-05 FS,SI-P222-133 SS,SI-P222-173 FS","SI-----1-05,SI-P222-133,SI-P222-173","SI-P222-138 FS","SI-P222-138",126,,128,,29,,29,,88,800,"HK1003 -Blackpoint D2 - Rev.0E DD30092021"
1-3589,SI-P222-135,"138 - FIRE SERVICES WATER COMPLIANCE ADVICE",5121,"HK1003-Rev.0E-3",TT_Task,"55902",-,-,-,0,TK_NotStart,27/12/2022,,24/02/2023,,"SI20SGE6E15 FS,SI20SGM6-15 FS,SI--SGM6-15 FS,SI20SGC6-15 FS,SI20SGJ6-5 FS,SI20SGC6J15 FS,SI20SGA6A26 FS,SI20SGA6A27 FS,SI20SGA6-15 FS,SI-----1-05 SS,SI20SGM6-18 FS,SI20SGC6J26 FS,SI20SGC6J27 FS,SI20SGC6J28 FS,SI20SGC6J20 FS,SI20SGC6J21 FS,SI20SGC6J22 FS,SI20SGC6J23 FS,SI20SGC6J24 FS,SI20SGC6J25 FS,SI20SGM6-21 FS,SI20SGC6J16 FS,SI20SGJ6-16 FS,SI20SGC6J17 FS,SI20SGM6-17 FS,SI20SGC6J18 FS,SI20SGM6-20 FS,SI20TPF1A6-25 FS,SI20TPF1A6-20 FS,SI20TPF1B6-25 FS,SI20TPF1B6-20 FS,SI20TPF1C6-25 FS,SI20TPF1C6-20 FS","SI20SGE6E15,SI20SGM6-15,SI--SGM6-15,SI20SGC6-15,SI20SGJ6-5,SI20SGC6J15,SI20SGA6A26,SI20SGA6A27,SI20SGA6-15,SI-----1-05,SI20SGM6-18,SI20SGC6J26,SI20SGC6J27,SI20SGC6J28,SI20SGC6J20,SI20SGC6J21,SI20SGC6J22,SI20SGC6J23,SI20SGC6J24,SI20SGC6J25,SI20SGM6-21,SI20SGC6J16,SI20SGJ6-16,SI20SGC6J17,SI20SGM6-17,SI20SGC6J18,SI20SGM6-20,SI20TPF1A6-25,SI20TPF1A6-20,SI20TPF1B6-25,SI20TPF1B6-20,SI20TPF1C6-25,SI20TPF1C6-20","SI-----1-09 FS,SI-P222-136 SS","SI-----1-09,SI-P222-136",125,,133,,29,,31,,87,240,"HK1003 -Blackpoint D2 - Rev.0E DD30092021"
1-3590,SI-P222-136,"139 - ISSUE FIRE SERVICE CERTIFICATE FOR OP (F.S.172)",5121,"HK1003-Rev.0E-3",TT_Task,"55902",-,-,-,0,TK_NotStart,02/01/2023,,01/04/2023,,"SI-----1-05 FS,SI-P222-135 SS,SI-P222-173 FS","SI-----1-05,SI-P222-135,SI-P222-173","SI-----1-09 FS,SI-P222-138 FS,SI-P222-138 FF,SI-P222-137 FS","SI-----1-09,SI-P222-138,SI-P222-138,SI-P222-137",126,,139,,29,,32,,88,192,"HK1003 -Blackpoint D2 - Rev.0E DD30092021"
1-3591,SI-P222-137,"140 - AP UNDERTAKING LETTERS",5121,"HK1003-Rev.0E-3",TT_Task,"55902",-,-,-,0,TK_NotStart,02/04/2023,,15/04/2023,,"SI-----1-05 FS,SI-P222-173 FS,SI-P222-174 FS,SI-P222-136 FS","SI-----1-05,SI-P222-173,SI-P222-174,SI-P222-136","SI-P222-138 SS","SI-P222-138",139,,141,,32,,32,,94,192,"HK1003 -Blackpoint D2 - Rev.0E DD30092021"
1-3592,SI-P222-138,"141 - FORM BA13 - APPLICATION OF OP",5121,"HK1003-Rev.0E-3",TT_Task,"55902",-,-,-,0,TK_NotStart,02/04/2023,,30/06/2023,,"SI-P222-137 SS,SI-----1-05 FS,SI-P222-136 FS,SI-P222-173 FS,SI-P222-174 FS,SI-P222-136 FF,SI-P222-111 FF,SI-P222-134 FS","SI-P222-137,SI-----1-05,SI-P222-136,SI-P222-173,SI-P222-174,SI-P222-136,SI-P222-111,SI-P222-134","SI20M--9-50 FS","SI20M--9-50",139,,151,,32,,35,,94,192,"HK1003 -Blackpoint D2 - Rev.0E DD30092021"
1-3593,SI-P222-139,"142 - MASTER LAYOUT PLAN REVISION",5121,"HK1003-Rev.0E-3",TT_Task,"55902",-,-,-,100,TK_Complete,01/06/2021,01/06/2021,29/08/2021,29/08/2021,"SI-----1-05 FS,SI-P222-175 FS","SI-----1-05,SI-P222-175","SI-P222-140 SS,SI-P222-149 SS","SI-P222-140,SI-P222-149",43,43,56,56,10,10,13,13,15,,"HK1003 -Blackpoint D2 - Rev.0E DD30092021"
1-3594,SI-P222-140,"142a - LANDSCAPE MASTER PLAN REVISION",5121,"HK1003-Rev.0E-3",TT_Task,"55902",-,-,-,0,TK_NotStart,02/01/2023,,01/04/2023,,"SI-P222-139 SS,SI-----1-05 FS,SI-P222-176 FS","SI-P222-139,SI-----1-05,SI-P222-176","SI-----1-09 FS,SI-P222-150 SS","SI-----1-09,SI-P222-150",126,,139,,29,,32,,88,2192,"HK1003 -Blackpoint D2 - Rev.0E DD30092021"
1-3595,SI-P222-141,"144 - BPPS APCL - AMENDMENT TO EXISTING LICENSE",5121,"HK1003-Rev.0E-3",TT_Task,"55902",-,-,-,0,TK_NotStart,08/07/2022,,03/01/2023,,"SI-----1-05 FS,SI-P222-177 FS","SI-----1-05,SI-P222-177","SI-----1-09 FS,SI20MB-9-15 FS,SI-P222-144 FS","SI-----1-09,SI20MB-9-15,SI-P222-144",100,,126,,23,,29,,73,1424,"HK1003 -Blackpoint D2 - Rev.0E DD30092021"
1-3596,SI-P222-142,"145 - AIR MODEL TEST",5121,"HK1003-Rev.0E-3",TT_Task,"55902",-,-,-,100,TK_Complete,14/07/2021,14/07/2021,14/07/2021,14/07/2021,"SI-----1-05 FS","SI-----1-05","SI-----1-09 FS,SI-P222-143 FS","SI-----1-09,SI-P222-143",49,49,49,49,11,11,11,11,21,,"HK1003 -Blackpoint D2 - Rev.0E DD30092021"
1-3597,SI-P222-143,"146 - LICENSE OBTAINED",5121,"HK1003-Rev.0E-3",TT_Task,"55902",-,-,-,100,TK_Complete,15/07/2021,15/07/2021,15/07/2021,15/07/2021,"SI-----1-05 FS,SI-P222-142 FS","SI-----1-05,SI-P222-142","SI-----1-09 FS","SI-----1-09",49,49,49,49,11,11,11,11,22,,"HK1003 -Blackpoint D2 - Rev.0E DD30092021"
1-3598,SI-P222-144,"147 - BPPS WPCL - AMENDMENT TO EXISTING LICENSE",5121,"HK1003-Rev.0E-3",TT_Task,"55902",-,-,-,0,TK_NotStart,04/01/2023,,04/01/2023,,"SI-----1-05 FS,SI-P222-141 FS","SI-----1-05,SI-P222-141","SI-----1-09 FS","SI-----1-09",126,,126,,29,,29,,88,2888,"HK1003 -Blackpoint D2 - Rev.0E DD30092021"
1-3599,SI-P222-145,"148 - EFFLUENT DISCHARGE PLAN",5121,"HK1003-Rev.0E-3",TT_Task,"55902",-,-,-,0,TK_NotStart,25/01/2023,,24/04/2023,,"SI-----1-05 FS","SI-----1-05","SI20PCB8M26 FS,SI20PAD8-55 FS","SI20PCB8M26,SI20PAD8-55",129,,142,,30,,33,,89,56,"HK1003 -Blackpoint D2 - Rev.0E DD30092021"
1-3600,SI--UMC2A02,"BASIC BUILDING DESIGN CONCRETE TS FOUNDATION - PRELIMINARY - 20UMC",5121,"HK1003-Rev.0E-3",TT_Task,"55902",-,-,-,100,TK_Complete,15/01/2021,15/01/2021,10/02/2021,10/02/2021,"SI--UMC2Y82 FS,SI-----1-05 FS,SI--UMC2A01 FS","SI--UMC2Y82,SI-----1-05,SI--UMC2A01","SI--UMC2A03 FS","SI--UMC2A03",23,23,27,27,5,5,6,6,2,,"HK1003 -Blackpoint D2 - Rev.0E DD30092021"
1-3601,SI--UMC2A04,"BD - SUBMISSION & APPROVAL - TURBOSET DETAIL DESIGN - 1ST SUBMISSION (PILE CAP)",5121,"HK1003-Rev.0E-3",TT_Task,"55902",-,-,-,100,TK_Complete,16/04/2021,16/04/2021,14/06/2021,14/06/2021,"SI--UMC2A03 FS,SI-P221-5& FS","SI--UMC2A03,SI-P221-5&","SI--UMC2A77 FS,SI--UMC2A82 FS,SI--UMC2A83 FF,SI--UMC2A86 FS","SI--UMC2A77,SI--UMC2A82,SI--UMC2A83,SI--UMC2A86",36,36,45,45,8,8,10,10,9,,"HK1003 -Blackpoint D2 - Rev.0E DD30092021"
1-3602,SI--UMC2A03,"DETAIL DESIGN CONCRETE TS FOUNDATION - PRELIMINARY - 20UMC",5121,"HK1003-Rev.0E-3",TT_Task,"55902",-,-,-,100,TK_Complete,29/01/2021,29/01/2021,15/04/2021,15/04/2021,"SI--UMC2A02 FS","SI--UMC2A02","SI--UMC2A04 FS","SI--UMC2A04",25,25,36,36,6,6,8,8,3,,"HK1003 -Blackpoint D2 - Rev.0E DD30092021"
1-3603,SI--UMC2A01,"(MS2*) PRELIMINARY INPUTS AVAILABLE TS FOUND. 20UMC",5121,"HK1003-Rev.0E-3",TT_FinMile,"55902",-,-,-,100,TK_Complete,14/01/2021,14/01/2021,14/01/2021,14/01/2021,"SI-----1-03 FS","SI-----1-03","SI--UMC2A02 FS","SI--UMC2A02",23,23,23,23,5,5,5,5,1,,"HK1003 -Blackpoint D2 - Rev.0E DD30092021"
1-3604,SI20UMC2B02,"BASIC BUILDING DESIGN CONCRETE STRUCTURE - PRELIMINARY - 20UMC",5121,"HK1003-Rev.0E-3",TT_Task,"55902",-,-,-,100,TK_Complete,15/01/2021,15/01/2021,22/02/2021,22/02/2021,"SI20UMC2B01 FS,SI-----1-05 FS","SI20UMC2B01,SI-----1-05","SI20UMC2B03 SS","SI20UMC2B03",23,23,29,29,5,5,6,6,2,,"HK1003 -Blackpoint D2 - Rev.0E DD30092021"
1-3605,SI20UMC2B04,"BD - SUBMISSION & APPROVAL - DETAIL DESIGN CONCRETE - PRELIMINARY - 20UMC",5121,"HK1003-Rev.0E-3",TT_Task,"55902",-,-,-,100,TK_Complete,16/03/2021,16/03/2021,14/05/2021,14/05/2021,"SI20UMC2B03 FS,SI-P221-15& FS","SI20UMC2B03,SI-P221-15&","SI20UMC2B40 FS,SI20UMC2B67 FS","SI20UMC2B40,SI20UMC2B67",32,32,40,40,7,7,9,9,6,,"HK1003 -Blackpoint D2 - Rev.0E DD30092021"
1-3606,SI20UMC2B03,"DETAIL DESIGN CONCRETE STRUCTURE - PRELIMINARY - 20UMC",5121,"HK1003-Rev.0E-3",TT_Task,"55902",-,-,-,100,TK_Complete,29/01/2021,29/01/2021,15/03/2021,15/03/2021,"SI20UMC2B02 SS","SI20UMC2B02","SI20UMC2B04 FS","SI20UMC2B04",25,25,32,32,6,6,7,7,3,,"HK1003 -Blackpoint D2 - Rev.0E DD30092021"
1-3607,SI20UMC2B01,"(MS2*) PRELIMINARY INPUTS AVAILABLE BUILDING FOUNDATION 20UMC",5121,"HK1003-Rev.0E-3",TT_FinMile,"55902",-,-,-,100,TK_Complete,14/01/2021,14/01/2021,14/01/2021,14/01/2021,"SI-----1-03 FS","SI-----1-03","SI20UMC2B02 FS","SI20UMC2B02",23,23,23,23,5,5,5,5,1,,"HK1003 -Blackpoint D2 - Rev.0E DD30092021"
1-3608,SI20UPY2-02,"BASIC BUILDING DESIGN CONCRETE STRUCTURE - PRELIMINARY - 20UPY",5121,"HK1003-Rev.0E-3",TT_Task,"55902",-,-,-,100,TK_Complete,15/01/2021,15/01/2021,10/02/2021,10/02/2021,"SI20UPY2-01 FS,SI-----1-05 FS","SI20UPY2-01,SI-----1-05","SI20UPY2-03 FS,SI20UPY2-5 FS","SI20UPY2-03,SI20UPY2-5",23,23,27,27,5,5,6,6,2,,"HK1003 -Blackpoint D2 - Rev.0E DD30092021"
1-3609,SI20UPY2-04,"BD - SUBMISSION & APPROVAL - DETAIL DESIGN CONCRETE - PRELIMINARY - 20UPY",5121,"HK1003-Rev.0E-3",TT_Task,"55902",-,-,-,100,TK_Complete,16/03/2021,16/03/2021,14/05/2021,14/05/2021,"SI20UPY2-03 FS,SI-P221-25& FS","SI20UPY2-03,SI-P221-25&","SI20UPY2-25 FS","SI20UPY2-25",32,32,40,40,7,7,9,9,6,,"HK1003 -Blackpoint D2 - Rev.0E DD30092021"
1-3610,SI20UPY2-03,"DETAIL DESIGN CONCRETE STRUCTURE - PRELIMINARY - 20UPY",5121,"HK1003-Rev.0E-3",TT_Task,"55902",-,-,-,100,TK_Complete,29/01/2021,29/01/2021,15/03/2021,15/03/2021,"SI20UPY2-02 FS","SI20UPY2-02","SI20UPY2-04 FS","SI20UPY2-04",25,25,32,32,6,6,7,7,3,,"HK1003 -Blackpoint D2 - Rev.0E DD30092021"
1-3611,SI20UPY2-01,"(MS2*) PRELIMINARY INPUTS AVAILABLE FOUNDATION 20UPY",5121,"HK1003-Rev.0E-3",TT_FinMile,"55902",-,-,-,100,TK_Complete,14/01/2021,14/01/2021,14/01/2021,14/01/2021,"SI-----1-03 FS","SI-----1-03","SI20UPY2-02 FS","SI20UPY2-02",23,23,23,23,5,5,5,5,1,,"HK1003 -Blackpoint D2 - Rev.0E DD30092021"
1-3612,SI20UEY2B02,"BASIC BUILDING DESIGN CONCRETE STRUCTURE - PRELIMINARY - 20UEY01",5121,"HK1003-Rev.0E-3",TT_Task,"55902",-,-,-,100,TK_Complete,15/01/2021,15/01/2021,10/02/2021,10/02/2021,"SI20UEY2B01 FS,SI-----1-05 FS","SI20UEY2B01,SI-----1-05","SI20UEY2B03 FS","SI20UEY2B03",23,23,27,27,5,5,6,6,2,,"HK1003 -Blackpoint D2 - Rev.0E DD30092021"
1-3613,SI20UEY2B04,"BD - SUBMISSION & APPROVAL - DETAIL DESIGN CONCRETE - PRELIMINARY - 20UEY01",5121,"HK1003-Rev.0E-3",TT_Task,"55902",-,-,-,100,TK_Complete,16/03/2021,16/03/2021,14/05/2021,14/05/2021,"SI20UEY2B03 FS,SI-P221-295& FS","SI20UEY2B03,SI-P221-295&","SI20UEY2-66 FS","SI20UEY2-66",32,32,40,40,7,7,9,9,6,,"HK1003 -Blackpoint D2 - Rev.0E DD30092021"
1-3614,SI20UEY2B03,"DETAIL DESIGN CONCRETE STRUCTURE - PRELIMINARY - 20UEY01",5121,"HK1003-Rev.0E-3",TT_Task,"55902",-,-,-,100,TK_Complete,29/01/2021,29/01/2021,15/03/2021,15/03/2021,"SI20UEY2B02 FS","SI20UEY2B02","SI20UEY2B04 FS","SI20UEY2B04",25,25,32,32,6,6,7,7,3,,"HK1003 -Blackpoint D2 - Rev.0E DD30092021"
1-3615,SI20UEY2B01,"(MS2*) PRELIMINARY INPUTS AVAILABLE FOUNDATION 20UEY01",5121,"HK1003-Rev.0E-3",TT_FinMile,"55902",-,-,-,100,TK_Complete,14/01/2021,14/01/2021,14/01/2021,14/01/2021,"SI-----1-03 FS","SI-----1-03","SI20UEY2B02 FS","SI20UEY2B02",23,23,23,23,5,5,5,5,1,,"HK1003 -Blackpoint D2 - Rev.0E DD30092021"
1-3616,SI20URD2B02,"BASIC BUILDING DESIGN CONCRETE STRUCTURE - PRELIMINARY - 20URD xx",5121,"HK1003-Rev.0E-3",TT_Task,"55902",-,-,-,100,TK_Complete,15/01/2021,15/01/2021,10/02/2021,10/02/2021,"SI20URD2B01 FS,SI-----1-05 FS","SI20URD2B01,SI-----1-05","SI20URD2B03 FS","SI20URD2B03",23,23,27,27,5,5,6,6,2,,"HK1003 -Blackpoint D2 - Rev.0E DD30092021"
1-3617,SI20URD2B04,"BD - SUBMISSION & APPROVAL - DETAIL DESIGN CONCRETE - PRELIMINARY - 20URD xx",5121,"HK1003-Rev.0E-3",TT_Task,"55902",-,-,-,100,TK_Complete,16/03/2021,16/03/2021,14/05/2021,14/05/2021,"SI20URD2B03 FS,SI-P221-260& FS","SI20URD2B03,SI-P221-260&","SI--URD2-78 FS,SI--URD2-79 FS","SI--URD2-78,SI--URD2-79",32,32,40,40,7,7,9,9,6,,"HK1003 -Blackpoint D2 - Rev.0E DD30092021"
1-3618,SI20URD2B03,"DETAIL DESIGN CONCRETE STRUCTURE - PRELIMINARY - 20URD xx",5121,"HK1003-Rev.0E-3",TT_Task,"55902",-,-,-,100,TK_Complete,29/01/2021,29/01/2021,15/03/2021,15/03/2021,"SI20URD2B02 FS","SI20URD2B02","SI20URD2B04 FS","SI20URD2B04",25,25,32,32,6,6,7,7,3,,"HK1003 -Blackpoint D2 - Rev.0E DD30092021"
1-3619,SI20URD2B01,"(MS2*) PRELIMINARY INPUTS AVAILABLE FOUNDATION 20URD xx",5121,"HK1003-Rev.0E-3",TT_FinMile,"55902",-,-,-,100,TK_Complete,14/01/2021,14/01/2021,14/01/2021,14/01/2021,"SI-----1-03 FS","SI-----1-03","SI20URD2B02 FS","SI20URD2B02",23,23,23,23,5,5,5,5,1,,"HK1003 -Blackpoint D2 - Rev.0E DD30092021"
1-3620,SI20URA2B02,"BASIC DESIGN SUBSTRUCTRURE-20URA/URD",5121,"HK1003-Rev.0E-3",TT_Task,"55902",-,-,-,100,TK_Complete,15/01/2021,15/01/2021,22/02/2021,22/02/2021,"SI20URA2B01 FS,SI-----1-05 FS","SI20URA2B01,SI-----1-05","SI20URA2B03 FS,SI--URA2-60 FS,SI--URA2-75 FS","SI20URA2B03,SI--URA2-60,SI--URA2-75",23,23,29,29,5,5,6,6,2,,"HK1003 -Blackpoint D2 - Rev.0E DD30092021"
1-3621,SI20URA2B04,"PRELIM. COOLING TOWER COMP. SUPERSTRUCTURE-LAYOUT&FIXING LOCATIONS",5121,"HK1003-Rev.0E-3",TT_Task,"55902",-,-,-,100,TK_Complete,11/06/2021,11/06/2021,09/07/2021,09/07/2021,"SI-P221-245& FS","SI-P221-245&","SI20PUR2J89 FS","SI20PUR2J89",44,44,48,48,10,10,11,11,17,,"HK1003 -Blackpoint D2 - Rev.0E DD30092021"
1-3622,SI20URA2B03,"PRELIM. COOLING TOWER COMP. SUBSTRUCTURE-LAYOUT&FIXING LOCATIONS",5121,"HK1003-Rev.0E-3",TT_Task,"55902",-,-,-,100,TK_Complete,11/06/2021,11/06/2021,27/06/2021,27/06/2021,"SI20URA2B02 FS,SI--URA2-75 FS","SI20URA2B02,SI--URA2-75","SI20PUR2J87 FS","SI20PUR2J87",44,44,47,47,10,10,11,11,17,,"HK1003 -Blackpoint D2 - Rev.0E DD30092021"
1-3623,SI20URA2B01,"INPUT LOADS SUBSTRUCTURE-20URA/URD",5121,"HK1003-Rev.0E-3",TT_FinMile,"55902",-,-,-,100,TK_Complete,14/01/2021,14/01/2021,14/01/2021,14/01/2021,"SI-----1-03 FS","SI-----1-03","SI20URA2B02 FS","SI20URA2B02",23,23,23,23,5,5,5,5,1,,"HK1003 -Blackpoint D2 - Rev.0E DD30092021"
1-3624,SI20URA2B4,"BASIC DESIGN SUPERSTRUCTRURE-20URA/URD",5121,"HK1003-Rev.0E-3",TT_Task,"55902",-,-,-,100,TK_Complete,17/05/2021,17/05/2021,29/05/2021,29/05/2021,"SI20URA2B5 FS,SI-----1-05 FS","SI20URA2B5,SI-----1-05","SI--URA2-70 FS","SI--URA2-70",41,41,43,43,9,9,10,10,13,,"HK1003 -Blackpoint D2 - Rev.0E DD30092021"
1-3625,SI20URA2B7,"BD - SUBMISSION APPROVAL 1ST ROUND SUPERSTRUCTURE-20URA/URD",5121,"HK1003-Rev.0E-3",TT_Task,"55902",-,-,-,100,TK_Complete,25/06/2021,25/06/2021,24/08/2021,24/08/2021,"SI-P221-250& FS,SI--URA2-70 FS","SI-P221-250&,SI--URA2-70","SI--URA2-89 FS","SI--URA2-89",46,46,55,55,10,10,12,12,19,,"HK1003 -Blackpoint D2 - Rev.0E DD30092021"
1-3626,SI20URA2B5,"INPUT LOADS SUPERSTRUCTURE-20URA/URD",5121,"HK1003-Rev.0E-3",TT_FinMile,"55902",-,-,-,100,TK_Complete,16/05/2021,16/05/2021,16/05/2021,16/05/2021,"SI-----1-03 FS","SI-----1-03","SI20URA2B4 FS","SI20URA2B4",41,41,41,41,9,9,9,9,13,,"HK1003 -Blackpoint D2 - Rev.0E DD30092021"
1-3627,SI20ULA2B02,"BASIC BUILDING DESIGN CONCRETE STRUCTURE - PRELIMINARY - 20ULA",5121,"HK1003-Rev.0E-3",TT_Task,"55902",-,-,-,100,TK_Complete,01/02/2021,01/02/2021,14/02/2021,14/02/2021,"SI20ULA2B01 FS","SI20ULA2B01","SI20ULA2B03 FS","SI20ULA2B03",26,26,28,28,6,6,6,6,4,,"HK1003 -Blackpoint D2 - Rev.0E DD30092021"
1-3628,SI20ULA2B04,"BD - SUBMISSION & APPROVAL - DETAIL DESIGN CONCRETE - PRELIMINARY - 20ULA",5121,"HK1003-Rev.0E-3",TT_Task,"55902",-,-,-,100,TK_Complete,16/04/2021,16/04/2021,14/06/2021,14/06/2021,"SI20ULA2B03 FS,SI-P221-100& FS","SI20ULA2B03,SI-P221-100&","SI--ULA2-78 FS,SI--ULA2-79 FS,SI--ULA2-79 FF","SI--ULA2-78,SI--ULA2-79,SI--ULA2-79",36,36,45,45,8,8,10,10,9,,"HK1003 -Blackpoint D2 - Rev.0E DD30092021"
1-3629,SI20ULA2B03,"DETAIL DESIGN CONCRETE STRUCTURE - PRELIMINARY - 20ULA",5121,"HK1003-Rev.0E-3",TT_Task,"55902",-,-,-,100,TK_Complete,15/02/2021,15/02/2021,15/04/2021,15/04/2021,"SI20ULA2B02 FS","SI20ULA2B02","SI20ULA2B04 FS","SI20ULA2B04",28,28,36,36,6,6,8,8,4,,"HK1003 -Blackpoint D2 - Rev.0E DD30092021"
1-3630,SI20ULA2B01,"(MS2*) PRELIMINARY INPUTS AVAILABLE FOUNDATION 20ULA",5121,"HK1003-Rev.0E-3",TT_FinMile,"55902",-,-,-,100,TK_Complete,31/01/2021,31/01/2021,31/01/2021,31/01/2021,"SI-----1-05 FS","SI-----1-05","SI20ULA2B02 FS","SI20ULA2B02",26,26,26,26,6,6,6,6,3,,"HK1003 -Blackpoint D2 - Rev.0E DD30092021"
1-3631,SI20UHW2B02,"BASIC BUILDING DESIGN CONCRETE STRUCTURE - PRELIMINARY - 20UHW",5121,"HK1003-Rev.0E-3",TT_Task,"55902",-,-,-,100,TK_Complete,01/02/2021,01/02/2021,14/02/2021,14/02/2021,"SI20UHW2B01 FS","SI20UHW2B01","SI20UHW2B03 FS","SI20UHW2B03",26,26,28,28,6,6,6,6,4,,"HK1003 -Blackpoint D2 - Rev.0E DD30092021"
1-3632,SI20UHW2B04,"BD - SUBMISSION & APPROVAL - DETAIL DESIGN CONCRETE - PRELIMINARY - 20UHW",5121,"HK1003-Rev.0E-3",TT_Task,"55902",-,-,-,100,TK_Complete,16/04/2021,16/04/2021,14/06/2021,14/06/2021,"SI20UHW2B03 FS,SI-P221-60& FS","SI20UHW2B03,SI-P221-60&","SI20UHW2-45 FS,SI20UHW2-50 FS","SI20UHW2-45,SI20UHW2-50",36,36,45,45,8,8,10,10,9,,"HK1003 -Blackpoint D2 - Rev.0E DD30092021"
1-3633,SI20UHW2B03,"DETAIL DESIGN CONCRETE STRUCTURE - PRELIMINARY - 20UHW",5121,"HK1003-Rev.0E-3",TT_Task,"55902",-,-,-,100,TK_Complete,15/02/2021,15/02/2021,15/04/2021,15/04/2021,"SI20UHW2B02 FS","SI20UHW2B02","SI20UHW2B04 FS","SI20UHW2B04",28,28,36,36,6,6,8,8,4,,"HK1003 -Blackpoint D2 - Rev.0E DD30092021"
1-3634,SI20UHW2B01,"(MS2*) PRELIMINARY INPUTS AVAILABLE FOUNDATION 20UHW",5121,"HK1003-Rev.0E-3",TT_FinMile,"55902",-,-,-,100,TK_Complete,31/01/2021,31/01/2021,31/01/2021,31/01/2021,"SI-----1-05 FS","SI-----1-05","SI20UHW2B02 FS","SI20UHW2B02",26,26,26,26,6,6,6,6,3,,"HK1003 -Blackpoint D2 - Rev.0E DD30092021"
1-3635,SI20UHA2B02,"BASIC BUILDING DESIGN CONCRETE STRUCTURE - PRELIMINARY - 20UHA",5121,"HK1003-Rev.0E-3",TT_Task,"55902",-,-,-,100,TK_Complete,01/02/2021,01/02/2021,02/04/2021,02/04/2021,"SI20UHA2B01 FS","SI20UHA2B01","SI20UHA2B03 SS","SI20UHA2B03",26,26,34,34,6,6,8,8,4,,"HK1003 -Blackpoint D2 - Rev.0E DD30092021"
1-3636,SI20UHA2B04,"BD - SUBMISSION & APPROVAL - DETAIL DESIGN CONCRETE - PRELIMINARY - 20UHA",5121,"HK1003-Rev.0E-3",TT_Task,"55902",-,-,-,100,TK_Complete,16/04/2021,16/04/2021,14/06/2021,14/06/2021,"SI20UHA2B03 FS,SI-P221-70& FS","SI20UHA2B03,SI-P221-70&","SI--UHA2-79 FS,SI--UHA2-81 FS","SI--UHA2-79,SI--UHA2-81",36,36,45,45,8,8,10,10,9,,"HK1003 -Blackpoint D2 - Rev.0E DD30092021"
1-3637,SI20UHA2B03,"DETAIL DESIGN CONCRETE STRUCTURE - PRELIMINARY - 20UHA",5121,"HK1003-Rev.0E-3",TT_Task,"55902",-,-,-,100,TK_Complete,15/02/2021,15/02/2021,15/04/2021,15/04/2021,"SI20UHA2B02 SS","SI20UHA2B02","SI20UHA2B04 FS,SI-P222-159 FS","SI20UHA2B04,SI-P222-159",28,28,36,36,6,6,8,8,5,,"HK1003 -Blackpoint D2 - Rev.0E DD30092021"
1-3638,SI20UHA2B01,"(MS2*) PRELIMINARY INPUTS AVAILABLE FOUNDATION 20UHA",5121,"HK1003-Rev.0E-3",TT_FinMile,"55902",-,-,-,100,TK_Complete,31/01/2021,31/01/2021,31/01/2021,31/01/2021,"SI-----1-05 FS","SI-----1-05","SI20UHA2B02 FS","SI20UHA2B02",26,26,26,26,6,6,6,6,3,,"HK1003 -Blackpoint D2 - Rev.0E DD30092021"
1-3639,SI20UVM2B02,"BASIC BUILDING DESIGN CONCRETE STRUCTURE - PRELIMINARY - 20UVM01",5121,"HK1003-Rev.0E-3",TT_Task,"55902",-,-,-,100,TK_Complete,01/02/2021,01/02/2021,14/02/2021,14/02/2021,"SI20UVM2B01 FS","SI20UVM2B01","SI20UVM2B03 FS","SI20UVM2B03",26,26,28,28,6,6,6,6,4,,"HK1003 -Blackpoint D2 - Rev.0E DD30092021"
1-3640,SI20UVM2B04,"BD - SUBMISSION & APPROVAL - DETAIL DESIGN CONCRETE - PRELIMINARY - 20UVM01",5121,"HK1003-Rev.0E-3",TT_Task,"55902",-,-,-,100,TK_Complete,16/04/2021,16/04/2021,14/06/2021,14/06/2021,"SI20UVM2B03 FS,SI-P221-115& FS","SI20UVM2B03,SI-P221-115&","SI20UVM2-80 FS","SI20UVM2-80",36,36,45,45,8,8,10,10,9,,"HK1003 -Blackpoint D2 - Rev.0E DD30092021"
1-3641,SI20UVM2B03,"DETAIL DESIGN CONCRETE STRUCTURE - PRELIMINARY - 20UVM01",5121,"HK1003-Rev.0E-3",TT_Task,"55902",-,-,-,100,TK_Complete,15/02/2021,15/02/2021,15/04/2021,15/04/2021,"SI20UVM2B02 FS","SI20UVM2B02","SI20UVM2B04 FS","SI20UVM2B04",28,28,36,36,6,6,8,8,5,,"HK1003 -Blackpoint D2 - Rev.0E DD30092021"
1-3642,SI20UVM2B01,"(MS2*) PRELIMINARY INPUTS AVAILABLE FOUNDATION 20UVM01",5121,"HK1003-Rev.0E-3",TT_FinMile,"55902",-,-,-,100,TK_Complete,31/01/2021,31/01/2021,31/01/2021,31/01/2021,"SI-----1-05 FS","SI-----1-05","SI20UVM2B02 FS","SI20UVM2B02",26,26,26,26,6,6,6,6,3,,"HK1003 -Blackpoint D2 - Rev.0E DD30092021"
1-3643,SI20UMY2B02,"BASIC BUILDING DESIGN CONCRETE STRUCTURE - PRELIMINARY - 20ULY/UMY",5121,"HK1003-Rev.0E-3",TT_Task,"55902",-,-,-,100,TK_Complete,01/02/2021,01/02/2021,14/02/2021,14/02/2021,"SI20UMY2B01 FS","SI20UMY2B01","SI20UMY2B03 FS","SI20UMY2B03",26,26,28,28,6,6,6,6,4,,"HK1003 -Blackpoint D2 - Rev.0E DD30092021"
1-3644,SI20UMY2B04,"BD - SUBMISSION & APPROVAL - DETAIL DESIGN CONCRETE - PRELIMINARY - 20ULY/UMY",5121,"HK1003-Rev.0E-3",TT_Task,"55902",-,-,-,100,TK_Complete,16/04/2021,16/04/2021,14/06/2021,14/06/2021,"SI20UMY2B03 FS,SI-P221-305& FS","SI20UMY2B03,SI-P221-305&","SI20UMY2-55 FS","SI20UMY2-55",36,36,45,45,8,8,10,10,9,,"HK1003 -Blackpoint D2 - Rev.0E DD30092021"
1-3645,SI20UMY2B03,"DETAIL DESIGN CONCRETE STRUCTURE - PRELIMINARY - 20ULY/UMY",5121,"HK1003-Rev.0E-3",TT_Task,"55902",-,-,-,100,TK_Complete,15/02/2021,15/02/2021,15/04/2021,15/04/2021,"SI20UMY2B02 FS","SI20UMY2B02","SI20UMY2B04 FS","SI20UMY2B04",28,28,36,36,6,6,8,8,5,,"HK1003 -Blackpoint D2 - Rev.0E DD30092021"
1-3646,SI20UMY2B01,"(MS2*) PRELIMINARY INPUTS AVAILABLE FOUNDATION 20ULY/UMY",5121,"HK1003-Rev.0E-3",TT_FinMile,"55902",-,-,-,100,TK_Complete,31/01/2021,31/01/2021,31/01/2021,31/01/2021,"SI-----1-05 FS","SI-----1-05","SI20UMY2B02 FS","SI20UMY2B02",26,26,26,26,6,6,6,6,3,,"HK1003 -Blackpoint D2 - Rev.0E DD30092021"
1-3647,SI20UBF2B02,"BASIC BUILDING DESIGN CONCRETE STRUCTURE - PRELIMINARY - 20UBE/UBF",5121,"HK1003-Rev.0E-3",TT_Task,"55902",-,-,-,100,TK_Complete,01/02/2021,01/02/2021,14/02/2021,14/02/2021,"SI20UBF2B01 FS","SI20UBF2B01","SI20UBF2B03 FS","SI20UBF2B03",26,26,28,28,6,6,6,6,4,,"HK1003 -Blackpoint D2 - Rev.0E DD30092021"
1-3648,SI20UBF2B04,"BD - SUBMISSION & APPROVAL - DETAIL DESIGN CONCRETE - PRELIMINARY - 20UBE/UBF",5121,"HK1003-Rev.0E-3",TT_Task,"55902",-,-,-,100,TK_Complete,16/04/2021,16/04/2021,14/06/2021,14/06/2021,"SI20UBF2B03 FS,SI-P221-145& FS","SI20UBF2B03,SI-P221-145&","SI--UBF2-80 FS","SI--UBF2-80",36,36,45,45,8,8,10,10,9,,"HK1003 -Blackpoint D2 - Rev.0E DD30092021"
1-3649,SI20UBF2B03,"DETAIL DESIGN CONCRETE STRUCTURE - PRELIMINARY - 20UBE/UBF",5121,"HK1003-Rev.0E-3",TT_Task,"55902",-,-,-,100,TK_Complete,15/02/2021,15/02/2021,15/04/2021,15/04/2021,"SI20UBF2B02 FS","SI20UBF2B02","SI20UBF2B04 FS","SI20UBF2B04",28,28,36,36,6,6,8,8,5,,"HK1003 -Blackpoint D2 - Rev.0E DD30092021"
1-3650,SI20UBF2B01,"(MS2*) PRELIMINARY INPUTS AVAILABLE FOUNDATION 20UBE/UBF",5121,"HK1003-Rev.0E-3",TT_FinMile,"55902",-,-,-,100,TK_Complete,31/01/2021,31/01/2021,31/01/2021,31/01/2021,"SI-----1-05 FS","SI-----1-05","SI20UBF2B02 FS","SI20UBF2B02",26,26,26,26,6,6,6,6,3,,"HK1003 -Blackpoint D2 - Rev.0E DD30092021"
1-3651,SI20UBA2B02,"BASIC BUILDING DESIGN CONCRETE STRUCTURE - PRELIMINARY - UBA7xxx",5121,"HK1003-Rev.0E-3",TT_Task,"55902",-,-,-,100,TK_Complete,01/02/2021,01/02/2021,14/02/2021,14/02/2021,"SI20UBA2B01 FS","SI20UBA2B01","SI20UBA2B03 FS","SI20UBA2B03",26,26,28,28,6,6,6,6,4,,"HK1003 -Blackpoint D2 - Rev.0E DD30092021"
1-3652,SI20UBA2B04,"BD - SUBMISSION & APPROVAL - DETAIL DESIGN CONCRETE - PRELIMINARY - UBA7xxx",5121,"HK1003-Rev.0E-3",TT_Task,"55902",-,-,-,100,TK_Complete,16/04/2021,16/04/2021,14/06/2021,14/06/2021,"SI20UBA2B03 FS,SI-P221-125& FS","SI20UBA2B03,SI-P221-125&","SI--UBA2-93 FS","SI--UBA2-93",36,36,45,45,8,8,10,10,9,,"HK1003 -Blackpoint D2 - Rev.0E DD30092021"
1-3653,SI20UBA2B03,"DETAIL DESIGN CONCRETE STRUCTURE - PRELIMINARY - UBA7xxx",5121,"HK1003-Rev.0E-3",TT_Task,"55902",-,-,-,100,TK_Complete,15/02/2021,15/02/2021,15/04/2021,15/04/2021,"SI20UBA2B02 FS","SI20UBA2B02","SI20UBA2B04 FS,SI--2222-141 FS,SI--UBA2-65 FS","SI20UBA2B04,SI--2222-141,SI--UBA2-65",28,28,36,36,6,6,8,8,5,,"HK1003 -Blackpoint D2 - Rev.0E DD30092021"
1-3654,SI20UBA2B01,"(MS2*) PRELIMINARY INPUTS AVAILABLE FOUNDATION UBA7xxx",5121,"HK1003-Rev.0E-3",TT_FinMile,"55902",-,-,-,100,TK_Complete,31/01/2021,31/01/2021,31/01/2021,31/01/2021,"SI-----1-05 FS","SI-----1-05","SI20UBA2B02 FS","SI20UBA2B02",26,26,26,26,6,6,6,6,3,,"HK1003 -Blackpoint D2 - Rev.0E DD30092021"
1-3655,SI20UEN2B02,"BASIC BUILDING DESIGN CONCRETE STRUCTURE - PRELIMINARY - 20UEN",5121,"HK1003-Rev.0E-3",TT_Task,"55902",-,-,-,100,TK_Complete,01/02/2021,01/02/2021,14/02/2021,14/02/2021,"SI20UEN2B01 FS","SI20UEN2B01","SI20UEN2B03 FS","SI20UEN2B03",26,26,28,28,6,6,6,6,4,,"HK1003 -Blackpoint D2 - Rev.0E DD30092021"
1-3656,SI20UEN2B04,"BD - SUBMISSION & APPROVAL - DETAIL DESIGN CONCRETE - PRELIMINARY - 20UEN",5121,"HK1003-Rev.0E-3",TT_Task,"55902",-,-,-,100,TK_Complete,16/04/2021,16/04/2021,14/06/2021,14/06/2021,"SI20UEN2B03 FS,SI-P221-90& FS","SI20UEN2B03,SI-P221-90&","SI20UEN2-80 FS","SI20UEN2-80",36,36,45,45,8,8,10,10,9,,"HK1003 -Blackpoint D2 - Rev.0E DD30092021"
1-3657,SI20UEN2B03,"DETAIL DESIGN CONCRETE STRUCTURE - PRELIMINARY - 20UEN",5121,"HK1003-Rev.0E-3",TT_Task,"55902",-,-,-,100,TK_Complete,15/02/2021,15/02/2021,15/04/2021,15/04/2021,"SI20UEN2B02 FS","SI20UEN2B02","SI20UEN2B04 FS","SI20UEN2B04",28,28,36,36,6,6,8,8,5,,"HK1003 -Blackpoint D2 - Rev.0E DD30092021"
1-3658,SI20UEN2B01,"(MS2*) PRELIMINARY INPUTS AVAILABLE FOUNDATION 20UEN",5121,"HK1003-Rev.0E-3",TT_FinMile,"55902",-,-,-,100,TK_Complete,31/01/2021,31/01/2021,31/01/2021,31/01/2021,"SI-----1-05 FS","SI-----1-05","SI20UEN2B02 FS","SI20UEN2B02",26,26,26,26,6,6,6,6,3,,"HK1003 -Blackpoint D2 - Rev.0E DD30092021"
1-3659,SI20UBX2B02,"BASIC BUILDING DESIGN CONCRETE STRUCTURE - PRELIMINARY - 20UBX/20UBG03",5121,"HK1003-Rev.0E-3",TT_Task,"55902",-,-,-,100,TK_Complete,01/02/2021,01/02/2021,14/02/2021,14/02/2021,"SI20UBX2B01 FS","SI20UBX2B01","SI20UBX2B03 FS","SI20UBX2B03",26,26,28,28,6,6,6,6,4,,"HK1003 -Blackpoint D2 - Rev.0E DD30092021"
1-3660,SI20UBX2B04,"BD - SUBMISSION & APPROVAL - DETAIL DESIGN CONCRETE - PRELIMINARY - 20UBX/20UBG03",5121,"HK1003-Rev.0E-3",TT_Task,"55902",-,-,-,100,TK_Complete,16/04/2021,16/04/2021,14/06/2021,14/06/2021,"SI20UBX2B03 FS,SI-P221-170& FS","SI20UBX2B03,SI-P221-170&","SI20UBX2-30 FS,SI20UBX2-35 FS","SI20UBX2-30,SI20UBX2-35",36,36,45,45,8,8,10,10,9,,"HK1003 -Blackpoint D2 - Rev.0E DD30092021"
1-3661,SI20UBX2B03,"DETAIL DESIGN CONCRETE STRUCTURE - PRELIMINARY - 20UBX/20UBG03",5121,"HK1003-Rev.0E-3",TT_Task,"55902",-,-,-,100,TK_Complete,15/02/2021,15/02/2021,15/04/2021,15/04/2021,"SI20UBX2B02 FS","SI20UBX2B02","SI20UBX2B04 FS","SI20UBX2B04",28,28,36,36,6,6,8,8,5,,"HK1003 -Blackpoint D2 - Rev.0E DD30092021"
1-3662,SI20UBX2B01,"(MS2*) PRELIMINARY INPUTS AVAILABLE FOUNDATION 20UBX/20UBG03",5121,"HK1003-Rev.0E-3",TT_FinMile,"55902",-,-,-,100,TK_Complete,31/01/2021,31/01/2021,31/01/2021,31/01/2021,"SI-----1-05 FS","SI-----1-05","SI20UBX2B02 FS","SI20UBX2B02",26,26,26,26,6,6,6,6,3,,"HK1003 -Blackpoint D2 - Rev.0E DD30092021"
1-3663,SI20UBX2-71,"CLIENT - REVIEW - DETAIL DESIGN STEEL STRUCTURE- 20UBE/UBF",5121,"HK1003-Rev.0E-3",TT_Task,"55902",-,-,-,88,TK_Active,10/08/2021,10/08/2021,06/10/2021,,"SI--UBF2B70 FS","SI--UBF2B70","SI20UBX2-80 SS,SI20UBX2-81 FS","SI20UBX2-80,SI20UBX2-81",53,53,61,,12,12,14,,25,1344,"HK1003 -Blackpoint D2 - Rev.0E DD30092021"
1-3664,SI20UBX2-80,"BD - SUBMISSION & APPROVAL- DETAIL DESIGN STEEL STRUCTURE 20UBE/UBF",5121,"HK1003-Rev.0E-3",TT_Task,"55902",-,-,-,85,TK_Active,10/08/2021,10/08/2021,08/10/2021,,"SI20UBX2-71 SS,SI-P221-500& FS","SI20UBX2-71,SI-P221-500&","SI20UBX2-81 FS","SI20UBX2-81",53,53,61,,12,12,14,,25,1328,"HK1003 -Blackpoint D2 - Rev.0E DD30092021"
1-3665,SI20UBX2-81,"BD - CONSENT LETTER DETAIL DESIGN STEEL STRUCTURE 20UBE/UBF",5121,"HK1003-Rev.0E-3",TT_Task,"55902",-,-,-,0,TK_NotStart,09/10/2021,,05/11/2021,,"SI20UBX2-80 FS,SI20UBX2-71 FS","SI20UBX2-80,SI20UBX2-71","SI--UBF2B75 FS","SI--UBF2B75",62,,65,,14,,15,,32,1328,"HK1003 -Blackpoint D2 - Rev.0E DD30092021"
1-3666,SI20UEN2-7,"HANDRAILS AND GRATING DWGS & CONNECTION FORCE REPORT 20UEN",5121,"HK1003-Rev.0E-3",TT_Task,"55902",-,-,-,0,TK_NotStart,14/10/2021,,03/11/2021,,"SI20UEN2-6 FF","SI20UEN2-6","SI20UEN2-10 FS,SI20UEN2-8 FS,SI20UEN2-8 FF","SI20UEN2-10,SI20UEN2-8,SI20UEN2-8",62,,65,,14,,15,,34,1912,"HK1003 -Blackpoint D2 - Rev.0E DD30092021"
1-3667,SI20UEN2-5,"(MS3) STEEL STRUCTURE FINAL DIMENSIONS, LOADS AVAILABLE 20UEN",5121,"HK1003-Rev.0E-3",TT_FinMile,"55902",-,-,-,100,TK_Complete,05/09/2021,05/09/2021,05/09/2021,05/09/2021,"SI--UEN2-60 FS","SI--UEN2-60","SI20UEN2-6 FS,SI20UEN2-106 FS","SI20UEN2-6,SI20UEN2-106",57,57,57,57,13,13,13,13,28,,"HK1003 -Blackpoint D2 - Rev.0E DD30092021"
1-3668,SI20UEN2-10,"(F) DETAIL DESIGN STEEL STRUCTURE WITH CONTRACTOR 20UEN",5121,"HK1003-Rev.0E-3",TT_FinMile,"55902",-,-,-,0,TK_NotStart,24/09/2022,,24/09/2022,,"SI20UEN2-7 FS,SI20UEN2-6 FS,SI20UEN2-9 FS,SI20UEN2-82 FS","SI20UEN2-7,SI20UEN2-6,SI20UEN2-9,SI20UEN2-82","SI20UEN3-11 FS","SI20UEN3-11",112,,112,,26,,26,,81,16,"HK1003 -Blackpoint D2 - Rev.0E DD30092021"
1-3669,SI20UEN2-6,"DETAIL DESIGN STEEL STRUCTURE 20UEN",5121,"HK1003-Rev.0E-3",TT_Task,"55902",-,-,-,22,TK_Active,20/09/2021,20/09/2021,03/11/2021,,"SI20UEN2-5 FS,SI20UEN2-106 FS","SI20UEN2-5,SI20UEN2-106","SI20UEN2-10 FS,SI20UEN2-8 FS,SI20UEN2-7 FF","SI20UEN2-10,SI20UEN2-8,SI20UEN2-7",59,59,65,,13,13,15,,29,1912,"HK1003 -Blackpoint D2 - Rev.0E DD30092021"
1-3670,SI20UEN2-8,"BD - SUBMISSION & APPROVAL - DETAIL DESIGN STEEL STRUCTURE 20UEN",5121,"HK1003-Rev.0E-3",TT_Task,"55902",-,-,-,0,TK_NotStart,04/11/2021,,02/01/2022,,"SI20UEN2-6 FS,SI20UEN2-7 FS,SI20UEN2-7 FF,SI-P221-485& FS","SI20UEN2-6,SI20UEN2-7,SI20UEN2-7,SI-P221-485&","SI20UEN2-9 FS","SI20UEN2-9",65,,74,,15,,17,,37,1912,"HK1003 -Blackpoint D2 - Rev.0E DD30092021"
1-3671,SI20UEN2-9,"BD - CONSENT LETTER - DETAIL DESIGN STEEL STRUCTURE 20UEN",5121,"HK1003-Rev.0E-3",TT_Task,"55902",-,-,-,0,TK_NotStart,03/01/2022,,30/01/2022,,"SI20UEN2-8 FS","SI20UEN2-8","SI20UEN2-10 FS","SI20UEN2-10",74,,78,,17,,18,,44,1912,"HK1003 -Blackpoint D2 - Rev.0E DD30092021"
1-3672,SI20UEN3-11,"FABRICATION DESIGN FABRICATION TRANSPORT STEEL STRUCTURE 20UEN",5121,"HK1003-Rev.0E-3",TT_Task,"55902",-,-,-,0,TK_NotStart,25/09/2022,,17/12/2022,,"SI20UEN2-10 FS","SI20UEN2-10","SI20UEN3-12 FS","SI20UEN3-12",112,,124,,26,,28,,82,16,"HK1003 -Blackpoint D2 - Rev.0E DD30092021"
1-3673,SI20UEN3-12,"(HS) START ERECTION STEEL STRUCTURE 20UEN",5121,"HK1003-Rev.0E-3",TT_Mile,"55902",-,-,-,0,TK_NotStart,18/12/2022,,18/12/2022,,"SI20UEN3-11 FS,SI20UEN5-45 FS,SI20EK-6-41 FS","SI20UEN3-11,SI20UEN5-45,SI20EK-6-41","SI20UEN3-13 FS","SI20UEN3-13",124,,124,,28,,28,,87,16,"HK1003 -Blackpoint D2 - Rev.0E DD30092021"
1-3674,SI20UEN3-14,"(RFE) STEEL STRUCTURE 20UEN",5121,"HK1003-Rev.0E-3",TT_FinMile,"55902",-,-,-,0,TK_NotStart,31/12/2022,,31/12/2022,,"SI20UEN3-13 FS","SI20UEN3-13","SI20EK-6-15 FF","SI20EK-6-15",126,,126,,29,,29,,88,352,"HK1003 -Blackpoint D2 - Rev.0E DD30092021"
1-3675,SI20UEN3-13,"ERECTION STEEL PLATFORMS 20UEN",5121,"HK1003-Rev.0E-3",TT_Task,"55902",-,-,-,0,TK_NotStart,18/12/2022,,31/12/2022,,"SI20UEN3-12 FS,SI20EK-6-41 FS","SI20UEN3-12,SI20EK-6-41","SI20UEN3-14 FS,SI20EK-6-15 FS","SI20UEN3-14,SI20EK-6-15",124,,126,,28,,29,,87,16,"HK1003 -Blackpoint D2 - Rev.0E DD30092021"
1-3676,SI20URA2-15,"FIXING FOR COMPONENTS(PLUS CP),PIPING(MTECH) SUBSTRUCTURE-20URA/URD",5121,"HK1003-Rev.0E-3",TT_FinMile,"55902",-,-,-,100,TK_Complete,27/07/2021,27/07/2021,27/07/2021,27/07/2021,"SI--PAD2-85 FS,SI--URA2-60 FS","SI--PAD2-85,SI--URA2-60","SI--URA2-83 FS","SI--URA2-83",51,51,51,51,12,12,12,12,23,,"HK1003 -Blackpoint D2 - Rev.0E DD30092021"
1-3677,SI20UHW3-18,"HANDRAILS AND GRATING DWGS & CONNECTION FORCE REPORT 20UHW",5121,"HK1003-Rev.0E-3",TT_Task,"55902",-,-,-,100,TK_Complete,23/06/2021,23/06/2021,07/09/2021,07/09/2021,"SI20UHW3-17 FF","SI20UHW3-17","SI20UHW3-21 FS,SI20UHW3-19 FS,SI20UHW3-19 FF","SI20UHW3-21,SI20UHW3-19,SI20UHW3-19",46,46,57,57,10,10,13,13,19,,"HK1003 -Blackpoint D2 - Rev.0E DD30092021"
1-3678,SI20UHW3-22,"FABRICATION DESIGN FABRICATION TRANSPORT STEEL STRUCTURE 20UHW",5121,"HK1003-Rev.0E-3",TT_Task,"55902",-,-,-,0,TK_NotStart,06/01/2022,,30/03/2022,,"SI20UHW3-21 FS,SI20UHW3-17 FS","SI20UHW3-21,SI20UHW3-17","SI20UHW3-23 FS","SI20UHW3-23",74,,86,,17,,20,,44,1664,"HK1003 -Blackpoint D2 - Rev.0E DD30092021"
1-3679,SI20UHW3-23,"(HS) START ERECTION STEEL STRUCTURE 20UHW",5121,"HK1003-Rev.0E-3",TT_Mile,"55902",-,-,-,0,TK_NotStart,31/03/2022,,31/03/2022,,"SI20UHW3-22 FS,SI20UHW5-75 FS","SI20UHW3-22,SI20UHW5-75","SI20UHW3-24 FS","SI20UHW3-24",86,,86,,20,,20,,54,1664,"HK1003 -Blackpoint D2 - Rev.0E DD30092021"
1-3680,SI20UHW3-25,"(RFE) STEEL STRUCTURE 20UHW",5121,"HK1003-Rev.0E-3",TT_FinMile,"55902",-,-,-,0,TK_NotStart,13/04/2022,,13/04/2022,,"SI20UHW3-24 FS","SI20UHW3-24","SI20LBH6D15 FS","SI20LBH6D15",88,,88,,20,,20,,57,1664,"HK1003 -Blackpoint D2 - Rev.0E DD30092021"
1-3681,SI20UHW3-24,"ERECTION STEEL PLATFORMS 20UHW",5121,"HK1003-Rev.0E-3",TT_Task,"55902",-,-,-,0,TK_NotStart,31/03/2022,,13/04/2022,,"SI20UHW3-23 FS","SI20UHW3-23","SI20UHW3-25 FS","SI20UHW3-25",86,,88,,20,,20,,54,1664,"HK1003 -Blackpoint D2 - Rev.0E DD30092021"
1-3682,SI20UHW3-16,"(MS3) STEEL STRUCTURE FINAL DIMENSIONS, LOADS AVAILABLE 20UHW",5121,"HK1003-Rev.0E-3",TT_FinMile,"55902",-,-,-,100,TK_Complete,12/05/2021,12/05/2021,12/05/2021,12/05/2021,"SI20UHW2-10 FS","SI20UHW2-10","SI20UHW3-17 FS,SI20UHW3-26 FS","SI20UHW3-17,SI20UHW3-26",40,40,40,40,9,9,9,9,12,,"HK1003 -Blackpoint D2 - Rev.0E DD30092021"
1-3683,SI20UHW3-21,"(F) DETAIL DESIGN STEEL STRUCTURE WITH CONTRACTOR 20UHW",5121,"HK1003-Rev.0E-3",TT_FinMile,"55902",-,-,-,0,TK_NotStart,05/01/2022,,05/01/2022,,"SI20UHW3-18 FS,SI20UHW3-17 FS,SI20UHW3-20 FS","SI20UHW3-18,SI20UHW3-17,SI20UHW3-20","SI20UHW3-22 FS","SI20UHW3-22",74,,74,,17,,17,,44,1664,"HK1003 -Blackpoint D2 - Rev.0E DD30092021"
1-3684,SI20UHW3-17,"DETAIL DESIGN STEEL STRUCTURE 20UHW",5121,"HK1003-Rev.0E-3",TT_Task,"55902",-,-,-,100,TK_Complete,09/06/2021,09/06/2021,13/07/2021,13/07/2021,"SI20UHW3-16 FS,SI20UHW3-26 FS","SI20UHW3-16,SI20UHW3-26","SI20UHW3-21 FS,SI20UHW3-22 FS,SI20UHW3-19 FS,SI20UHW3-18 FF","SI20UHW3-21,SI20UHW3-22,SI20UHW3-19,SI20UHW3-18",44,44,49,49,10,10,11,11,16,,"HK1003 -Blackpoint D2 - Rev.0E DD30092021"
1-3685,SI20UHW3-19,"BD - SUBMISSION & APPROVAL - STEEL STRUCTURE 20UHW",5121,"HK1003-Rev.0E-3",TT_Task,"55902",-,-,-,0,TK_NotStart,10/10/2021,,08/12/2021,,"SI20UHW3-17 FS,SI20UHW3-18 FS,SI20UHW3-18 FF,SI-P221-475& FS","SI20UHW3-17,SI20UHW3-18,SI20UHW3-18,SI-P221-475&","SI20UHW3-20 FS","SI20UHW3-20",62,,70,,14,,16,,33,1664,"HK1003 -Blackpoint D2 - Rev.0E DD30092021"
1-3686,SI20UHW3-20,"BD - CONSENT LETTER - STEEL STRUCTURE 20UHW",5121,"HK1003-Rev.0E-3",TT_Task,"55902",-,-,-,0,TK_NotStart,09/12/2021,,05/01/2022,,"SI20UHW3-19 FS","SI20UHW3-19","SI20UHW3-21 FS","SI20UHW3-21",70,,74,,16,,17,,41,1664,"HK1003 -Blackpoint D2 - Rev.0E DD30092021"
1-3687,SI20URA3-18,"HANDRAILS AND GRATING DWGS & CONNECTION FORCE REPORT 20URA",5121,"HK1003-Rev.0E-3",TT_Task,"55902",-,-,-,100,TK_Complete,26/07/2021,26/07/2021,03/09/2021,03/09/2021,"SI20URA3-17 FF","SI20URA3-17","SI20URA3-21 FS,SI20URA3-19 FS","SI20URA3-21,SI20URA3-19",51,51,56,56,11,11,13,13,23,,"HK1003 -Blackpoint D2 - Rev.0E DD30092021"
1-3688,SI20URA3-25,"(RFE) STEEL STRUCTURE 20URA",5121,"HK1003-Rev.0E-3",TT_FinMile,"55902",-,-,-,0,TK_NotStart,21/09/2022,,21/09/2022,,"SI20URA3-24 FS","SI20URA3-24","SI20PAD8-10 FS,SI20PAD6-44 FS","SI20PAD8-10,SI20PAD6-44",111,,111,,26,,26,,81,1192,"HK1003 -Blackpoint D2 - Rev.0E DD30092021"
1-3689,SI20URA3-16,"(MS3) STEEL STRUCTURE FINAL DIMENSIONS, LOADS AVAILABLE 20URA",5121,"HK1003-Rev.0E-3",TT_FinMile,"55902",-,-,-,100,TK_Complete,16/05/2021,16/05/2021,16/05/2021,16/05/2021,"SI--URA2-76 FS","SI--URA2-76","SI20URA3-17 FS,SI20URA3-27 FS","SI20URA3-17,SI20URA3-27",41,41,41,41,9,9,9,9,13,,"HK1003 -Blackpoint D2 - Rev.0E DD30092021"
1-3690,SI20URA3-21,"(F) DETAIL DESIGN STEEL STRUCTURE WITH CONTRACTOR 20URA",5121,"HK1003-Rev.0E-3",TT_FinMile,"55902",-,-,-,0,TK_NotStart,18/05/2022,,18/05/2022,,"SI20URA3-18 FS,SI20URA3-17 FS,SI20URA3-20 FS","SI20URA3-18,SI20URA3-17,SI20URA3-20","SI20URA3-22 FS","SI20URA3-22",93,,93,,21,,21,,65,1192,"HK1003 -Blackpoint D2 - Rev.0E DD30092021"
1-3691,SI20URA3-17,"DETAIL DESIGN STEEL STRUCTURE 20URA",5121,"HK1003-Rev.0E-3",TT_Task,"55902",-,-,-,100,TK_Complete,02/07/2021,02/07/2021,03/09/2021,03/09/2021,"SI20URA3-16 FS,SI20URA3-27 FS","SI20URA3-16,SI20URA3-27","SI20URA3-21 FS,SI20URA3-19 FS,SI20URA3-18 FF,SI20URA3-26 FS","SI20URA3-21,SI20URA3-19,SI20URA3-18,SI20URA3-26",47,47,56,56,11,11,13,13,20,,"HK1003 -Blackpoint D2 - Rev.0E DD30092021"
1-3692,SI20URA3-23,"(HS) START ERECTION STEEL STRUCTURE 20URA",5121,"HK1003-Rev.0E-3",TT_Mile,"55902",-,-,-,0,TK_NotStart,25/08/2022,,25/08/2022,,"SI20URA3-22 FS,SI20URA5-45 FS","SI20URA3-22,SI20URA5-45","SI20URA3-24 FS","SI20URA3-24",107,,107,,25,,25,,79,1192,"HK1003 -Blackpoint D2 - Rev.0E DD30092021"
1-3693,SI20URA3-24,"ERECTION STEEL PLATFORMS 20URA",5121,"HK1003-Rev.0E-3",TT_Task,"55902",-,-,-,0,TK_NotStart,25/08/2022,,21/09/2022,,"SI20URA3-23 FS","SI20URA3-23","SI20URA3-25 FS","SI20URA3-25",107,,111,,25,,26,,79,1192,"HK1003 -Blackpoint D2 - Rev.0E DD30092021"
1-3694,SI20URA3-22,"FABRICATION DESIGN FABRICATION TRANSPORT STEEL STRUCTURE 20URA",5121,"HK1003-Rev.0E-3",TT_Task,"55902",-,-,-,0,TK_NotStart,19/05/2022,,24/08/2022,,"SI20URA3-21 FS","SI20URA3-21","SI20URA3-23 FS","SI20URA3-23",93,,107,,21,,25,,65,1192,"HK1003 -Blackpoint D2 - Rev.0E DD30092021"
1-3695,SI20URA3-19,"BD - SUBMISSION & APPROVAL - STEEL STRUCTURE 20URA",5121,"HK1003-Rev.0E-3",TT_Task,"55902",-,-,-,0,TK_NotStart,10/10/2021,,08/12/2021,,"SI20URA3-17 FS,SI20URA3-18 FS,SI-P221-560& FS,SI20URA3-26 FS","SI20URA3-17,SI20URA3-18,SI-P221-560&,SI20URA3-26","SI20URA3-20 FS","SI20URA3-20",62,,70,,14,,16,,33,2256,"HK1003 -Blackpoint D2 - Rev.0E DD30092021"
1-3696,SI20URA3-20,"BD - CONSENT LETTER - STEEL STRUCTURE 20URA",5121,"HK1003-Rev.0E-3",TT_Task,"55902",-,-,-,0,TK_NotStart,09/12/2021,,05/01/2022,,"SI20URA3-19 FS","SI20URA3-19","SI20URA3-21 FS","SI20URA3-21",70,,74,,16,,17,,41,2256,"HK1003 -Blackpoint D2 - Rev.0E DD30092021"
1-3697,SI20URD3-18,"HANDRAILS AND GRATING DWGS & CONNECTION FORCE REPORT 20URD",5121,"HK1003-Rev.0E-3",TT_Task,"55902",-,-,-,72,TK_Active,22/08/2021,22/08/2021,14/10/2021,,"SI20URD3-17 FF","SI20URD3-17","SI20URD3-21 FS,SI20URD3-19 FS","SI20URD3-21,SI20URD3-19",55,55,62,,12,12,14,,27,1920,"HK1003 -Blackpoint D2 - Rev.0E DD30092021"
1-3698,SI20URD3-25,"(RFE) STEEL STRUCTURE 20URD",5121,"HK1003-Rev.0E-3",TT_FinMile,"55902",-,-,-,0,TK_NotStart,02/05/2022,,02/05/2022,,"SI20URD3-24 FS","SI20URD3-24","SI20PCC6B16 FS","SI20PCC6B16",91,,91,,21,,21,,61,1920,"HK1003 -Blackpoint D2 - Rev.0E DD30092021"
1-3699,SI20URD3-16,"(MS3) STEEL STRUCTURE FINAL DIMENSIONS, LOADS AVAILABLE 20URD",5121,"HK1003-Rev.0E-3",TT_FinMile,"55902",-,-,-,100,TK_Complete,26/05/2021,26/05/2021,26/05/2021,26/05/2021,"SI--URD2-60 FS","SI--URD2-60","SI20URD3-17 FS","SI20URD3-17",42,42,42,42,9,9,9,9,14,,"HK1003 -Blackpoint D2 - Rev.0E DD30092021"
1-3700,SI20URD3-21,"(F) DETAIL DESIGN STEEL STRUCTURE WITH CONTRACTOR 20URD",5121,"HK1003-Rev.0E-3",TT_FinMile,"55902",-,-,-,0,TK_NotStart,10/01/2022,,10/01/2022,,"SI20URD3-18 FS,SI20URD3-17 FS,SI20URD3-20 FS","SI20URD3-18,SI20URD3-17,SI20URD3-20","SI20URD3-22 FS","SI20URD3-22",75,,75,,17,,17,,45,1920,"HK1003 -Blackpoint D2 - Rev.0E DD30092021"
1-3701,SI20URD3-17,"DETAIL DESIGN STEEL STRUCTURE 20URD",5121,"HK1003-Rev.0E-3",TT_Task,"55902",-,-,-,82,TK_Active,25/07/2021,25/07/2021,14/10/2021,,"SI20URD3-16 FS","SI20URD3-16","SI20URD3-21 FS,SI20URD3-19 FS,SI20URD3-18 FF","SI20URD3-21,SI20URD3-19,SI20URD3-18",51,51,62,,11,11,14,,23,1920,"HK1003 -Blackpoint D2 - Rev.0E DD30092021"
1-3702,SI20URD3-23,"(HS) START ERECTION STEEL STRUCTURE 20URD",5121,"HK1003-Rev.0E-3",TT_Mile,"55902",-,-,-,0,TK_NotStart,19/04/2022,,19/04/2022,,"SI20URD3-22 FS,SI20URD5-45 FS","SI20URD3-22,SI20URD5-45","SI20URD3-24 FS","SI20URD3-24",89,,89,,20,,20,,58,1920,"HK1003 -Blackpoint D2 - Rev.0E DD30092021"
1-3703,SI20URD3-24,"ERECTION STEEL PLATFORMS 20URD",5121,"HK1003-Rev.0E-3",TT_Task,"55902",-,-,-,0,TK_NotStart,19/04/2022,,02/05/2022,,"SI20URD3-23 FS","SI20URD3-23","SI20URD3-25 FS","SI20URD3-25",89,,91,,20,,21,,58,1920,"HK1003 -Blackpoint D2 - Rev.0E DD30092021"
1-3704,SI20URD3-22,"FABRICATION DESIGN FABRICATION TRANSPORT STEEL STRUCTURE 20URD",5121,"HK1003-Rev.0E-3",TT_Task,"55902",-,-,-,0,TK_NotStart,11/01/2022,,18/04/2022,,"SI20URD3-21 FS","SI20URD3-21","SI20URD3-23 FS","SI20URD3-23",75,,89,,17,,20,,45,1920,"HK1003 -Blackpoint D2 - Rev.0E DD30092021"
1-3705,SI20URD3-19,"BD - SUBMISSION & APPROVAL - STEEL STRUCTURE 20URD",5121,"HK1003-Rev.0E-3",TT_Task,"55902",-,-,-,0,TK_NotStart,15/10/2021,,13/12/2021,,"SI20URD3-17 FS,SI20URD3-18 FS,SI--URD2-78 FS,SI-P221-545& FS","SI20URD3-17,SI20URD3-18,SI--URD2-78,SI-P221-545&","SI20URD3-20 FS","SI20URD3-20",62,,71,,14,,16,,34,1920,"HK1003 -Blackpoint D2 - Rev.0E DD30092021"
1-3706,SI20URD3-20,"BD - CONSENT LETTER - STEEL STRUCTURE 20URD",5121,"HK1003-Rev.0E-3",TT_Task,"55902",-,-,-,0,TK_NotStart,14/12/2021,,10/01/2022,,"SI20URD3-19 FS","SI20URD3-19","SI20URD3-21 FS","SI20URD3-21",71,,75,,16,,17,,42,1920,"HK1003 -Blackpoint D2 - Rev.0E DD30092021"
1-3707,SI--UBA2B99,"HANDRAILS AND GRATING DWGS & CONNECTION FORCE REPORT 20UBA7910/20",5121,"HK1003-Rev.0E-3",TT_Task,"55902",-,-,-,24,TK_Active,25/09/2021,25/09/2021,15/10/2021,,"SI20UBA2B-37 FS","SI20UBA2B-37","SI--UBA2B98 FF","SI--UBA2B98",60,60,62,,14,14,14,,30,1400,"HK1003 -Blackpoint D2 - Rev.0E DD30092021"
1-3708,SI--UBA2D79,"(F) DETAIL DESIGN STEEL STRUCTURE WITH CONTRACTOR 20UBA7910/20",5121,"HK1003-Rev.0E-3",TT_Mile,"55902",-,-,-,0,TK_NotStart,24/04/2022,,24/04/2022,,"SI--UBA2B98 FS,SI--UBA2-106 FS","SI--UBA2B98,SI--UBA2-106","SI20UBA3B77 FS","SI20UBA3B77",90,,90,,21,,21,,59,656,"HK1003 -Blackpoint D2 - Rev.0E DD30092021"
1-3709,SI--UBA2B98,"DETAIL DESIGN STEEL STRUCTURE 20UBA7910/20",5121,"HK1003-Rev.0E-3",TT_Task,"55902",-,-,-,64,TK_Active,01/09/2021,01/09/2021,15/10/2021,,"SI--UBA2F61 FS,SI20UBA2B-37 FS,SI--UBA2B99 FF,SI--UBA2F62 FF","SI--UBA2F61,SI20UBA2B-37,SI--UBA2B99,SI--UBA2F62","SI--UBA2D79 FS,SI--UBA2-106 FS","SI--UBA2D79,SI--UBA2-106",56,56,62,,13,13,14,,28,1400,"HK1003 -Blackpoint D2 - Rev.0E DD30092021"
1-3710,SI--UBA2F61,"(MS3) STEEL STRUCTURE FINAL DIMENSIONS, LOADS AVAILABLE 20UBA7910/20",5121,"HK1003-Rev.0E-3",TT_FinMile,"55902",-,-,-,100,TK_Complete,11/05/2021,11/05/2021,11/05/2021,11/05/2021,"SI--UBA2F60 FS","SI--UBA2F60","SI--UBA2B98 FS,SI20UBA2B-37 FS,SI--UBA2F62 FS","SI--UBA2B98,SI20UBA2B-37,SI--UBA2F62",40,40,40,40,9,9,9,9,12,,"HK1003 -Blackpoint D2 - Rev.0E DD30092021"
1-3711,SI20UBA3B77,"FABRICATION DESIGN/FABRICATION/TRANSPORT STEEL STRUC.20UBA7910/20",5121,"HK1003-Rev.0E-3",TT_Task,"55902",-,-,-,0,TK_NotStart,24/04/2022,,30/07/2022,,"SI--UBA2D79 FS,SI--UBA2-107 FS","SI--UBA2D79,SI--UBA2-107","SI20UBA5B10 FS","SI20UBA5B10",90,,104,,21,,24,,59,656,"HK1003 -Blackpoint D2 - Rev.0E DD30092021"
1-3712,SI--UBA2-106,"BD - SUBMISSION & APPROVAL - STEEL STRUCTURE 20UBA7910/20",5121,"HK1003-Rev.0E-3",TT_Task,"55902",-,-,-,0,TK_NotStart,09/12/2021,,06/02/2022,,"SI--UBA2B98 FS,SI-P221-495& FS,SI--UBA2-96 FS,SI--UBA2-96 SS,SI--2222-141 FS,SI--2222-143& FS","SI--UBA2B98,SI-P221-495&,SI--UBA2-96,SI--UBA2-96,SI--2222-141,SI--2222-143&","SI--UBA2-107 FS,SI--UBA2D79 FS,SI--UBA2-104 SS,SI20UBA2B-30 SS","SI--UBA2-107,SI--UBA2D79,SI--UBA2-104,SI20UBA2B-30",70,,79,,16,,18,,41,968,"HK1003 -Blackpoint D2 - Rev.0E DD30092021"
1-3713,SI--UBA2-107,"BD - CONSENT LETTER - STEEL STRUCTURE 20UBA7910/20",5121,"HK1003-Rev.0E-3",TT_Task,"55902",-,-,-,0,TK_NotStart,07/02/2022,,06/03/2022,,"SI--UBA2-106 FS","SI--UBA2-106","SI20UBA3B77 FS","SI20UBA3B77",79,,83,,18,,19,,48,1040,"HK1003 -Blackpoint D2 - Rev.0E DD30092021"
1-3714,SI20UBD2C-83,"HANDRAILS AND GRATING DWGS & CONNECTION FORCE REPORT 20UBD03/04",5121,"HK1003-Rev.0E-3",TT_Task,"55902",-,-,-,0,TK_NotStart,11/11/2021,,01/12/2021,,"SI20UBD2C-82 FF","SI20UBD2C-82","SI20UBD2C-86 FS,SI20UBD2C-84 FS","SI20UBD2C-86,SI20UBD2C-84",66,,69,,15,,16,,38,1456,"HK1003 -Blackpoint D2 - Rev.0E DD30092021"
1-3715,SI20UBD5C-48,"(RFE) STEEL STRUCTURE 20UBD03/04",5121,"HK1003-Rev.0E-3",TT_FinMile,"55902",-,-,-,0,TK_NotStart,16/06/2022,,16/06/2022,,"SI20UBD5C-47 FS","SI20UBD5C-47","SI--BHT7-20 FS,SI--BHT7-15 FS","SI--BHT7-20,SI--BHT7-15",97,,97,,22,,22,,70,1456,"HK1003 -Blackpoint D2 - Rev.0E DD30092021"
1-3716,SI20UBD2C-81,"(MS3) STEEL STRUCTURE FINAL DIMENSIONS, LOADS AVAILABLE 20UBD03/04",5121,"HK1003-Rev.0E-3",TT_FinMile,"55902",-,-,-,0,TK_NotStart,06/10/2021,,06/10/2021,,"SI20UBD2E60 FS","SI20UBD2E60","SI20UBD2C-82 FS","SI20UBD2C-82",61,,61,,14,,14,,32,1456,"HK1003 -Blackpoint D2 - Rev.0E DD30092021"
1-3717,SI20UBD2C-86,"(F) DETAIL DESIGN STEEL STRUCTURE WITH CONTRACTOR 20UBD03/04",5121,"HK1003-Rev.0E-3",TT_FinMile,"55902",-,-,-,0,TK_NotStart,27/02/2022,,27/02/2022,,"SI20UBD2C-83 FS,SI20UBD2C-82 FS,SI20UBD2C-85 FS","SI20UBD2C-83,SI20UBD2C-82,SI20UBD2C-85","SI20UBD3C-26 FS","SI20UBD3C-26",82,,82,,19,,19,,51,1456,"HK1003 -Blackpoint D2 - Rev.0E DD30092021"
1-3718,SI20UBD2C-82,"DETAIL DESIGN STEEL STRUCTURE 20UBD03/04",5121,"HK1003-Rev.0E-3",TT_Task,"55902",-,-,-,0,TK_NotStart,14/10/2021,,01/12/2021,,"SI20UBD2C-81 FS","SI20UBD2C-81","SI20UBD2C-86 FS,SI20UBD2C-84 FS,SI20UBD2C-83 FF","SI20UBD2C-86,SI20UBD2C-84,SI20UBD2C-83",62,,69,,14,,16,,34,1456,"HK1003 -Blackpoint D2 - Rev.0E DD30092021"
1-3719,SI20UBD5C-46,"(HS) START ERECTION STEEL STRUCTURE 20UBD03/04",5121,"HK1003-Rev.0E-3",TT_Mile,"55902",-,-,-,0,TK_NotStart,03/06/2022,,03/06/2022,,"SI20UBD3C-26 FS,SI20UBD5-58 FS","SI20UBD3C-26,SI20UBD5-58","SI20UBD5C-47 FS","SI20UBD5C-47",95,,95,,22,,22,,68,1456,"HK1003 -Blackpoint D2 - Rev.0E DD30092021"
1-3720,SI20UBD5C-47,"ERECTION STEEL PLATFORMS 20UBD03/04",5121,"HK1003-Rev.0E-3",TT_Task,"55902",-,-,-,0,TK_NotStart,03/06/2022,,16/06/2022,,"SI20UBD5C-46 FS","SI20UBD5C-46","SI20UBD5C-48 FS","SI20UBD5C-48",95,,97,,22,,22,,68,1456,"HK1003 -Blackpoint D2 - Rev.0E DD30092021"
1-3721,SI20UBD3C-26,"FABRICATION DESIGN FABRICATION TRANSPORT STEEL STRUCTURE 20UBD03/04",5121,"HK1003-Rev.0E-3",TT_Task,"55902",-,-,-,0,TK_NotStart,28/02/2022,,02/06/2022,,"SI20UBD2C-86 FS","SI20UBD2C-86","SI20UBD5C-46 FS","SI20UBD5C-46",82,,95,,19,,22,,51,1456,"HK1003 -Blackpoint D2 - Rev.0E DD30092021"
1-3722,SI20UBD2C-84,"BD - SUBMISSION & APPROVAL - DETAIL DESIGN STEEL 20UBD03/04",5121,"HK1003-Rev.0E-3",TT_Task,"55902",-,-,-,0,TK_NotStart,02/12/2021,,30/01/2022,,"SI20UBD2C-82 FS,SI20UBD2C-83 FS,SI20UBD2E91 SS,SI-P221-540& FS","SI20UBD2C-82,SI20UBD2C-83,SI20UBD2E91,SI-P221-540&","SI20UBD2C-85 FS","SI20UBD2C-85",69,,78,,16,,18,,40,1456,"HK1003 -Blackpoint D2 - Rev.0E DD30092021"
1-3723,SI20UBD2C-85,"BD - CONSENT LETTER - DETAIL DESIGN STEEL 20UBD03/04",5121,"HK1003-Rev.0E-3",TT_Task,"55902",-,-,-,0,TK_NotStart,31/01/2022,,27/02/2022,,"SI20UBD2C-84 FS","SI20UBD2C-84","SI20UBD2C-86 FS","SI20UBD2C-86",78,,82,,18,,19,,47,1456,"HK1003 -Blackpoint D2 - Rev.0E DD30092021"
1-3724,SI20UBD2C-89,"HANDRAILS AND GRATING DWGS & CONNECTION FORCE REPORT 20UBD01/02",5121,"HK1003-Rev.0E-3",TT_Task,"55902",-,-,-,62,TK_Active,17/09/2021,17/09/2021,07/10/2021,,"SI20UBD2C-88 FF","SI20UBD2C-88","SI20UBD2C-92 FS,SI20UBD2C-90 FS","SI20UBD2C-92,SI20UBD2C-90",58,58,61,,13,13,14,,29,1608,"HK1003 -Blackpoint D2 - Rev.0E DD30092021"
1-3725,SI20UBD5C-51,"(RFE) STEEL STRUCTURE 20UBD01/02",5121,"HK1003-Rev.0E-3",TT_FinMile,"55902",-,-,-,0,TK_NotStart,24/06/2022,,24/06/2022,,"SI20UBD5C-50 FS","SI20UBD5C-50","SI20BFT7-15 FS","SI20BFT7-15",98,,98,,23,,23,,71,1064,"HK1003 -Blackpoint D2 - Rev.0E DD30092021"
1-3726,SI20UBD2C-87,"(MS3) STEEL STRUCTURE FINAL DIMENSIONS, LOADS AVAILABLE 20UBD01/02",5121,"HK1003-Rev.0E-3",TT_FinMile,"55902",-,-,-,100,TK_Complete,12/08/2021,12/08/2021,12/08/2021,12/08/2021,"SI20UBD2-05 FS","SI20UBD2-05","SI20UBD2C-88 FS","SI20UBD2C-88",53,53,53,53,12,12,12,12,25,,"HK1003 -Blackpoint D2 - Rev.0E DD30092021"
1-3727,SI20UBD2C-92,"(F) DETAIL DESIGN STEEL STRUCTURE WITH CONTRACTOR 20UBD01/02",5121,"HK1003-Rev.0E-3",TT_FinMile,"55902",-,-,-,0,TK_NotStart,06/03/2022,,06/03/2022,,"SI20UBD2C-89 FS,SI20UBD2C-88 FS,SI20UBD2C-91 FS","SI20UBD2C-89,SI20UBD2C-88,SI20UBD2C-91","SI20UBD3C-27 FS","SI20UBD3C-27",83,,83,,19,,19,,52,1112,"HK1003 -Blackpoint D2 - Rev.0E DD30092021"
1-3728,SI20UBD2C-88,"DETAIL DESIGN STEEL STRUCTURE 20UBD01/02",5121,"HK1003-Rev.0E-3",TT_Task,"55902",-,-,-,84,TK_Active,20/08/2021,20/08/2021,07/10/2021,,"SI20UBD2C-87 FS","SI20UBD2C-87","SI20UBD2C-92 FS,SI20UBD2C-90 FS,SI20UBD2C-89 FF","SI20UBD2C-92,SI20UBD2C-90,SI20UBD2C-89",54,54,61,,12,12,14,,26,1608,"HK1003 -Blackpoint D2 - Rev.0E DD30092021"
1-3729,SI20UBD5C-49,"(HS) START ERECTION STEEL STRUCTURE 20UBD01/02",5121,"HK1003-Rev.0E-3",TT_Mile,"55902",-,-,-,0,TK_NotStart,11/06/2022,,11/06/2022,,"SI20UBD3C-27 FS,SI20UBD5-45 FS","SI20UBD3C-27,SI20UBD5-45","SI20UBD5C-50 FS","SI20UBD5C-50",97,,97,,22,,22,,69,1064,"HK1003 -Blackpoint D2 - Rev.0E DD30092021"
1-3730,SI20UBD5C-50,"ERECTION STEEL PLATFORMS 20UBD01/02",5121,"HK1003-Rev.0E-3",TT_Task,"55902",-,-,-,0,TK_NotStart,11/06/2022,,24/06/2022,,"SI20UBD5C-49 FS","SI20UBD5C-49","SI20UBD5C-51 FS","SI20UBD5C-51",97,,98,,22,,23,,69,1064,"HK1003 -Blackpoint D2 - Rev.0E DD30092021"
1-3731,SI20UBD3C-27,"FABRICATION DESIGN FABRICATION TRANSPORT STEEL STRUCTURE 20UBD01/02",5121,"HK1003-Rev.0E-3",TT_Task,"55902",-,-,-,0,TK_NotStart,07/03/2022,,04/06/2022,,"SI20UBD2C-92 FS","SI20UBD2C-92","SI20UBD5C-49 FS","SI20UBD5C-49",83,,96,,19,,22,,52,1112,"HK1003 -Blackpoint D2 - Rev.0E DD30092021"
1-3732,SI20UBD2C-90,"BD - SUBMISSION & APPROVAL - DETAIL DESIGN STEEL 20UBD01/02",5121,"HK1003-Rev.0E-3",TT_Task,"55902",-,-,-,0,TK_NotStart,09/12/2021,,06/02/2022,,"SI20UBD2C-88 FS,SI20UBD2C-89 FS,SI20UBD2-25 FS,SI-P221-505& FS","SI20UBD2C-88,SI20UBD2C-89,SI20UBD2-25,SI-P221-505&","SI20UBD2C-91 FS","SI20UBD2C-91",70,,79,,16,,18,,41,1112,"HK1003 -Blackpoint D2 - Rev.0E DD30092021"
1-3733,SI20UBD2C-91,"BD - CONSENT LETTER - DETAIL DESIGN STEEL 20UBD01/02",5121,"HK1003-Rev.0E-3",TT_Task,"55902",-,-,-,0,TK_NotStart,07/02/2022,,06/03/2022,,"SI20UBD2C-90 FS","SI20UBD2C-90","SI20UBD2C-92 FS","SI20UBD2C-92",79,,83,,18,,19,,48,1112,"HK1003 -Blackpoint D2 - Rev.0E DD30092021"
1-3734,SI20UBN2D78,"HANDRAILS AND GRATING DWGS & CONNECTION FORCE REPORT 20UBN",5121,"HK1003-Rev.0E-3",TT_Task,"55902",-,-,-,0,TK_NotStart,01/12/2021,,21/12/2021,,"SI20UBN2D70 FF","SI20UBN2D70","SI20UBN2H75 FS","SI20UBN2H75",69,,72,,16,,16,,40,3440,"HK1003 -Blackpoint D2 - Rev.0E DD30092021"
1-3735,SI20UBN5B46,"(RFE) STEEL STRUCTURE 20UBN",5121,"HK1003-Rev.0E-3",TT_FinMile,"55902",-,-,-,0,TK_NotStart,08/10/2022,,08/10/2022,,"SI20UBN5B17 FS","SI20UBN5B17","SI20XKA8-10 FS","SI20XKA8-10",114,,114,,26,,26,,83,2008,"HK1003 -Blackpoint D2 - Rev.0E DD30092021"
1-3736,SI20UBN2J60,"(MS3) STEEL STRUCTURE FINAL DIMENSIONS, LOADS AVAILABLE 20UBN",5121,"HK1003-Rev.0E-3",TT_FinMile,"55902",-,-,-,0,TK_NotStart,26/10/2021,,26/10/2021,,"SI20UBN2-5 FS","SI20UBN2-5","SI20UBN2D70 FS","SI20UBN2D70",64,,64,,15,,15,,36,2736,"HK1003 -Blackpoint D2 - Rev.0E DD30092021"
1-3737,SI20UBN2H75,"(F) DETAIL DESIGN STEEL STRUCTURE WITH CONTRACTOR 20UBN",5121,"HK1003-Rev.0E-3",TT_FinMile,"55902",-,-,-,0,TK_NotStart,18/06/2022,,18/06/2022,,"SI20UBN2D78 FS,SI20UBN2D70 FS,SI20UBN2-105 FS","SI20UBN2D78,SI20UBN2D70,SI20UBN2-105","SI20UBN3B27 FS","SI20UBN3B27",98,,98,,22,,22,,70,2008,"HK1003 -Blackpoint D2 - Rev.0E DD30092021"
1-3738,SI20UBN2D70,"DETAIL DESIGN STEEL STRUCTURE 20UBN",5121,"HK1003-Rev.0E-3",TT_Task,"55902",-,-,-,0,TK_NotStart,03/11/2021,,21/12/2021,,"SI20UBN2J60 FS","SI20UBN2J60","SI20UBN2H75 FS,SI20UBN2-104 FS,SI20UBN2D78 FF","SI20UBN2H75,SI20UBN2-104,SI20UBN2D78",65,,72,,15,,16,,37,2736,"HK1003 -Blackpoint D2 - Rev.0E DD30092021"
1-3739,SI20UBN5B12,"(HS) START ERECTION STEEL STRUCTURE 20UBN",5121,"HK1003-Rev.0E-3",TT_Mile,"55902",-,-,-,0,TK_NotStart,25/09/2022,,25/09/2022,,"SI20UBN3B27 FS,SI20UBN5-20 FS,SI20XKA7-15 SS","SI20UBN3B27,SI20UBN5-20,SI20XKA7-15","SI20UBN5B17 FS","SI20UBN5B17",112,,112,,26,,26,,82,2008,"HK1003 -Blackpoint D2 - Rev.0E DD30092021"
1-3740,SI20UBN5B17,"ERECTION STEEL PLATFORMS 20UBN",5121,"HK1003-Rev.0E-3",TT_Task,"55902",-,-,-,0,TK_NotStart,25/09/2022,,08/10/2022,,"SI20UBN5B12 FS","SI20UBN5B12","SI20UBN5B46 FS","SI20UBN5B46",112,,114,,26,,26,,82,2008,"HK1003 -Blackpoint D2 - Rev.0E DD30092021"
1-3741,SI20UBN3B27,"FABRICATION DESIGN FABRICATION TRANSPORT STEEL STRUCTURE 20UBN",5121,"HK1003-Rev.0E-3",TT_Task,"55902",-,-,-,0,TK_NotStart,19/06/2022,,24/09/2022,,"SI20UBN2H75 FS","SI20UBN2H75","SI20UBN5B12 FS","SI20UBN5B12",98,,112,,22,,26,,70,2008,"HK1003 -Blackpoint D2 - Rev.0E DD30092021"
1-3742,SI20UBN2-104,"BD - SUBMISSION & APPROVAL - STEEL STRUCTURE 20UBN",5121,"HK1003-Rev.0E-3",TT_Task,"55902",-,-,-,0,TK_NotStart,23/03/2022,,21/05/2022,,"SI20UBN2D70 FS,SI20UBN2-30 SS,SI-P221-515& FS,SI20UBY2-46 SS,SI20UBY2-67 SS","SI20UBN2D70,SI20UBN2-30,SI-P221-515&,SI20UBY2-46,SI20UBY2-67","SI20UBN2-105 FS","SI20UBN2-105",85,,94,,19,,21,,53,2008,"HK1003 -Blackpoint D2 - Rev.0E DD30092021"
1-3743,SI20UBN2-105,"BD - CONSENT LETTER - STEEL STRUCTURE 20UBN",5121,"HK1003-Rev.0E-3",TT_Task,"55902",-,-,-,0,TK_NotStart,22/05/2022,,18/06/2022,,"SI20UBN2-104 FS","SI20UBN2-104","SI20UBN2H75 FS","SI20UBN2H75",94,,98,,21,,22,,66,2008,"HK1003 -Blackpoint D2 - Rev.0E DD30092021"
1-3744,SI20UMX2D78,"HANDRAILS AND GRATING DWGS & CONNECTION FORCE REPORT 20UMX02",5121,"HK1003-Rev.0E-3",TT_Task,"55902",-,-,-,0,TK_NotStart,25/02/2022,,17/03/2022,,"SI20UMX2D70 FF","SI20UMX2D70","SI20UMX2H75 FS","SI20UMX2H75",81,,84,,19,,19,,51,1072,"HK1003 -Blackpoint D2 - Rev.0E DD30092021"
1-3745,SI20UMX5B46,"(RFE) STEEL STRUCTURE 20UMX02",5121,"HK1003-Rev.0E-3",TT_FinMile,"55902",-,-,-,0,TK_NotStart,07/07/2022,,07/07/2022,,"SI20UMX5B17 FS","SI20UMX5B17","SI20MBV6-15 FS,SI20MBV6-75 FS,SI20MBV6-85 FS","SI20MBV6-15,SI20MBV6-75,SI20MBV6-85",100,,100,,23,,23,,72,1072,"HK1003 -Blackpoint D2 - Rev.0E DD30092021"
1-3746,SI20UMX2J60,"(MS3) STEEL STRUCTURE FINAL DIMENSIONS, LOADS AVAILABLE 20UMX02",5121,"HK1003-Rev.0E-3",TT_FinMile,"55902",-,-,-,0,TK_NotStart,13/10/2021,,13/10/2021,,"SI20UMX2-60 FS","SI20UMX2-60","SI20UMX2D70 FS","SI20UMX2D70",62,,62,,14,,14,,34,1160,"HK1003 -Blackpoint D2 - Rev.0E DD30092021"
1-3747,SI20UMX2H75,"(F) DETAIL DESIGN STEEL STRUCTURE WITH CONTRACTOR 20UMX02",5121,"HK1003-Rev.0E-3",TT_FinMile,"55902",-,-,-,0,TK_NotStart,17/03/2022,,17/03/2022,,"SI20UMX2D78 FS,SI20UMX2D70 FS,SI20UMX2-105 FS","SI20UMX2D78,SI20UMX2D70,SI20UMX2-105","SI20UMX3B27 FS","SI20UMX3B27",84,,84,,19,,19,,53,1072,"HK1003 -Blackpoint D2 - Rev.0E DD30092021"
1-3748,SI20UMX2D70,"DETAIL DESIGN STEEL STRUCTURE 20UMX02",5121,"HK1003-Rev.0E-3",TT_Task,"55902",-,-,-,0,TK_NotStart,21/10/2021,,08/12/2021,,"SI20UMX2J60 FS","SI20UMX2J60","SI20UMX2H75 FS,SI20UMX2-104 FS,SI20UMX2D78 FF","SI20UMX2H75,SI20UMX2-104,SI20UMX2D78",63,,70,,14,,16,,35,1160,"HK1003 -Blackpoint D2 - Rev.0E DD30092021"
1-3749,SI20UMX5B12,"(HS) START ERECTION STEEL STRUCTURE 20UMX02",5121,"HK1003-Rev.0E-3",TT_Mile,"55902",-,-,-,0,TK_NotStart,24/06/2022,,24/06/2022,,"SI20UMX3B27 FS,SI20UMX5-12 FS","SI20UMX3B27,SI20UMX5-12","SI20UMX5B17 FS","SI20UMX5B17",98,,98,,23,,23,,71,1072,"HK1003 -Blackpoint D2 - Rev.0E DD30092021"
1-3750,SI20UMX5B17,"ERECTION STEEL PLATFORMS 20UMX02",5121,"HK1003-Rev.0E-3",TT_Task,"55902",-,-,-,0,TK_NotStart,24/06/2022,,07/07/2022,,"SI20UMX5B12 FS","SI20UMX5B12","SI20UMX5B46 FS","SI20UMX5B46",98,,100,,23,,23,,71,1072,"HK1003 -Blackpoint D2 - Rev.0E DD30092021"
1-3751,SI20UMX3B27,"FABRICATION DESIGN FABRICATION TRANSPORT STEEL STRUCTURE 20UMX02",5121,"HK1003-Rev.0E-3",TT_Task,"55902",-,-,-,0,TK_NotStart,18/03/2022,,23/06/2022,,"SI20UMX2H75 FS","SI20UMX2H75","SI20UMX5B12 FS","SI20UMX5B12",84,,98,,19,,23,,53,1072,"HK1003 -Blackpoint D2 - Rev.0E DD30092021"
1-3752,SI20UMX2-104,"BD - SUBMISSION & APPROVAL - STEEL STRUCTURE 20UMX02",5121,"HK1003-Rev.0E-3",TT_Task,"55902",-,-,-,0,TK_NotStart,09/12/2021,,06/02/2022,,"SI20UMX2D70 FS,SI20UMX2-82 FS,SI-P221-550& FS","SI20UMX2D70,SI20UMX2-82,SI-P221-550&","SI20UMX2-105 FS","SI20UMX2-105",70,,79,,16,,18,,41,1160,"HK1003 -Blackpoint D2 - Rev.0E DD30092021"
1-3753,SI20UMX2-105,"BD - CONSENT LETTER - STEEL STRUCTURE 20UMX02",5121,"HK1003-Rev.0E-3",TT_Task,"55902",-,-,-,0,TK_NotStart,07/02/2022,,06/03/2022,,"SI20UMX2-104 FS","SI20UMX2-104","SI20UMX2H75 FS","SI20UMX2H75",79,,83,,18,,19,,48,1160,"HK1003 -Blackpoint D2 - Rev.0E DD30092021"
1-3754,SI20UEX2D78,"HANDRAILS AND GRATING DWGS & CONNECTION FORCE REPORT 20UEX01",5121,"HK1003-Rev.0E-3",TT_Task,"55902",-,-,-,0,TK_NotStart,02/03/2022,,22/03/2022,,"SI20UEX2D70 FF","SI20UEX2D70","SI20UEX2H75 FS,SI20UEX2-104 FS","SI20UEX2H75,SI20UEX2-104",82,,85,,19,,19,,51,552,"HK1003 -Blackpoint D2 - Rev.0E DD30092021"
1-3755,SI20UEX5B46,"(RFE) STEEL STRUCTURE 20UEX01",5121,"HK1003-Rev.0E-3",TT_FinMile,"55902",-,-,-,0,TK_NotStart,08/10/2022,,08/10/2022,,"SI20UEX5B17 FS","SI20UEX5B17","SI20XKA8-10 FS,SI-P222-78 FS,SI20UEX2-55 FS","SI20XKA8-10,SI-P222-78,SI20UEX2-55",114,,114,,26,,26,,83,552,"HK1003 -Blackpoint D2 - Rev.0E DD30092021"
1-3756,SI20UEX2J60,"(MS3) STEEL STRUCTURE FINAL DIMENSIONS, LOADS AVAILABLE 20UEX01",5121,"HK1003-Rev.0E-3",TT_FinMile,"55902",-,-,-,0,TK_NotStart,15/01/2022,,15/01/2022,,"SI20UEX2-10 FS","SI20UEX2-10","SI20UEX2D70 FS,SI20UEX2D79 FS","SI20UEX2D70,SI20UEX2D79",76,,76,,17,,17,,45,552,"HK1003 -Blackpoint D2 - Rev.0E DD30092021"
1-3757,SI20UEX2H75,"(F) DETAIL DESIGN STEEL STRUCTURE WITH CONTRACTOR 20UEX01",5121,"HK1003-Rev.0E-3",TT_FinMile,"55902",-,-,-,0,TK_NotStart,18/06/2022,,18/06/2022,,"SI20UEX2D78 FS,SI20UEX2D70 FS,SI20UEX2-105 FS","SI20UEX2D78,SI20UEX2D70,SI20UEX2-105","SI20UEX3B27 FS","SI20UEX3B27",98,,98,,22,,22,,70,552,"HK1003 -Blackpoint D2 - Rev.0E DD30092021"
1-3758,SI20UEX2D70,"DETAIL DESIGN STEEL STRUCTURE 20UEX01",5121,"HK1003-Rev.0E-3",TT_Task,"55902",-,-,-,0,TK_NotStart,06/02/2022,,22/03/2022,,"SI20UEX2J60 FS,SI20UEX2D79 FS","SI20UEX2J60,SI20UEX2D79","SI20UEX2H75 FS,SI20UEX2-104 FS,SI20UEX2D78 FF","SI20UEX2H75,SI20UEX2-104,SI20UEX2D78",79,,85,,18,,19,,48,552,"HK1003 -Blackpoint D2 - Rev.0E DD30092021"
1-3759,SI20UEX5B12,"(HS) START ERECTION STEEL STRUCTURE 20UEX01",5121,"HK1003-Rev.0E-3",TT_Mile,"55902",-,-,-,0,TK_NotStart,25/09/2022,,25/09/2022,,"SI20UEX3B27 FS,SI20UEX2-100 FS,SI20UEX2-106 FS","SI20UEX3B27,SI20UEX2-100,SI20UEX2-106","SI20UEX5B17 FS","SI20UEX5B17",112,,112,,26,,26,,82,552,"HK1003 -Blackpoint D2 - Rev.0E DD30092021"
1-3760,SI20UEX5B17,"ERECTION STEEL PLATFORMS 20UEX01",5121,"HK1003-Rev.0E-3",TT_Task,"55902",-,-,-,0,TK_NotStart,25/09/2022,,08/10/2022,,"SI20UEX5B12 FS","SI20UEX5B12","SI20UEX5B46 FS","SI20UEX5B46",112,,114,,26,,26,,82,552,"HK1003 -Blackpoint D2 - Rev.0E DD30092021"
1-3761,SI20UEX3B27,"FABRICATION DESIGN FABRICATION TRANSPORT STEEL STRUCTURE 20UEX01",5121,"HK1003-Rev.0E-3",TT_Task,"55902",-,-,-,0,TK_NotStart,19/06/2022,,24/09/2022,,"SI20UEX2H75 FS","SI20UEX2H75","SI20UEX5B12 FS","SI20UEX5B12",98,,112,,22,,26,,70,552,"HK1003 -Blackpoint D2 - Rev.0E DD30092021"
1-3762,SI20UEX2-104,"BD - SUBMISSION & APPROVAL - STEEL STRUCTURE 20UEX01",5121,"HK1003-Rev.0E-3",TT_Task,"55902",-,-,-,0,TK_NotStart,23/03/2022,,21/05/2022,,"SI20UEX2D70 FS,SI20UEX2-45 SS,SI-P221-520& FS,SI20UBY2-46 SS,SI20UBY2-67 SS,SI20UEX2D78 FS,SI-P222-77 FS","SI20UEX2D70,SI20UEX2-45,SI-P221-520&,SI20UBY2-46,SI20UBY2-67,SI20UEX2D78,SI-P222-77","SI20UEX2-105 FS","SI20UEX2-105",85,,94,,19,,21,,53,552,"HK1003 -Blackpoint D2 - Rev.0E DD30092021"
1-3763,SI20UEX2-105,"BD - CONSENT LETTER - STEEL STRUCTURE 20UEX01",5121,"HK1003-Rev.0E-3",TT_Task,"55902",-,-,-,0,TK_NotStart,22/05/2022,,18/06/2022,,"SI20UEX2-104 FS","SI20UEX2-104","SI20UEX2H75 FS","SI20UEX2H75",94,,98,,21,,22,,66,552,"HK1003 -Blackpoint D2 - Rev.0E DD30092021"
1-3764,SI20UZJ5-62,"(H) START PLACING FORMWORK FENCES&GATES",5121,"HK1003-Rev.0E-3",TT_Mile,"55902",-,-,-,0,TK_NotStart,10/11/2022,,10/11/2022,,"SI20UZJ5-60 FS,SI20UZJ5-60 SS","SI20UZJ5-60,SI20UZJ5-60","SI20UZJ5-64 FS,SI20UZJ5-64 SS","SI20UZJ5-64,SI20UZJ5-64",118,,118,,27,,27,,85,464,"HK1003 -Blackpoint D2 - Rev.0E DD30092021"
1-3765,SI20UZJ5-60,"WORK PREPARATION, EXCAVATION FENCES&GATES",5121,"HK1003-Rev.0E-3",TT_Task,"55902",-,-,-,0,TK_NotStart,27/10/2022,,09/11/2022,,"SI20UZJ2-88 FS,SI20UZJ2-88 FF,SI-P222-84 FS,SI20URA5-45 FS","SI20UZJ2-88,SI20UZJ2-88,SI-P222-84,SI20URA5-45","SI20UZJ5-62 FS,SI20UZJ5-62 SS,SI-P222-131# FF,SI-P222-131# SS","SI20UZJ5-62,SI20UZJ5-62,SI-P222-131#,SI-P222-131#",116,,118,,27,,27,,84,464,"HK1003 -Blackpoint D2 - Rev.0E DD30092021"
1-3766,SI20UZJ5-66,"(RFE) FOUNDATION FENCES&GATES",5121,"HK1003-Rev.0E-3",TT_FinMile,"55902",-,-,-,0,TK_NotStart,22/02/2023,,22/02/2023,,"SI20UZJ5-64 FS","SI20UZJ5-64","SI20UZJ-99 FS","SI20UZJ-99",133,,133,,31,,31,,91,464,"HK1003 -Blackpoint D2 - Rev.0E DD30092021"
1-3767,SI20UZJ5-64,"CONSTRUCTION FOUNDATION FENCES&GATES",5121,"HK1003-Rev.0E-3",TT_Task,"55902",-,-,-,0,TK_NotStart,10/11/2022,,22/02/2023,,"SI20UZJ5-62 FS,SI20UZJ5-62 SS","SI20UZJ5-62,SI20UZJ5-62","SI20UZJ5-66 FS","SI20UZJ5-66",118,,133,,27,,31,,85,464,"HK1003 -Blackpoint D2 - Rev.0E DD30092021"
1-3768,SI20UZJ2-82,"BASIC BUILDING DESIGN INCL. 3D MODEL FENCES&GATES",5121,"HK1003-Rev.0E-3",TT_Task,"55902",-,-,-,100,TK_Complete,11/06/2021,11/06/2021,01/07/2021,01/07/2021,"SI20UZJ2-81 FS,SI20UZJ2-81 FF","SI20UZJ2-81,SI20UZJ2-81","SI20UZJ2-83 FS,SI20UZJ2-83 FF","SI20UZJ2-83,SI20UZJ2-83",44,44,47,47,10,10,11,11,17,,"HK1003 -Blackpoint D2 - Rev.0E DD30092021"
1-3769,SI20UZJ2-84,"PREPARATION FOUNDATION GROUNDING DWGS UTG FENCES&GATES",5121,"HK1003-Rev.0E-3",TT_Task,"55902",-,-,-,29,TK_Active,26/09/2021,26/09/2021,09/10/2021,,"SI20UZJ2-83 FF,SI20UZJ2-81 FS","SI20UZJ2-83,SI20UZJ2-81","SI20UZJ2-88 FS,SI20UZJ2-85 FS,SI20UZJ2-85 FF,SI20UZJ2-85 SS","SI20UZJ2-88,SI20UZJ2-85,SI20UZJ2-85,SI20UZJ2-85",60,60,62,,14,14,14,,30,2816,"HK1003 -Blackpoint D2 - Rev.0E DD30092021"
1-3770,SI20UZJ2-83,"DETAIL DESIGN CONCRETE STRUCTURE FENCES&GATES",5121,"HK1003-Rev.0E-3",TT_Task,"55902",-,-,-,90,TK_Active,02/07/2021,02/07/2021,09/10/2021,,"SI20UZJ2-82 FS,SI20UZJ2-81 FS,SI20UZJ2-82 FF","SI20UZJ2-82,SI20UZJ2-81,SI20UZJ2-82","SI20UZJ2-84 FF,SI20UZJ2-88 FS,SI20UZJ2-85 FS","SI20UZJ2-84,SI20UZJ2-88,SI20UZJ2-85",47,47,62,,11,11,14,,20,2816,"HK1003 -Blackpoint D2 - Rev.0E DD30092021"
1-3771,SI20UZJ2-88,"(F) CONCRETE STRUCTURE DWGS ON SITE RELEASED FOR EXECUTION FENCES&GATES",5121,"HK1003-Rev.0E-3",TT_FinMile,"55902",-,-,-,0,TK_NotStart,26/10/2022,,26/10/2022,,"SI20UZJ2-83 FS,SI20UZJ2-84 FS,SI20UZJ2-87 FS,SI20UZJ2-87 FF","SI20UZJ2-83,SI20UZJ2-84,SI20UZJ2-87,SI20UZJ2-87","SI20UZJ5-60 FS,SI20UZJ5-60 FF","SI20UZJ5-60,SI20UZJ5-60",116,,116,,27,,27,,84,464,"HK1003 -Blackpoint D2 - Rev.0E DD30092021"
1-3772,SI20UZJ2-81,"(MS3) CONCRETE STRUCTURE FINAL DIMENSIONS, LOADS AVAILABLE FENCES&GATES",5121,"HK1003-Rev.0E-3",TT_FinMile,"55902",-,-,-,100,TK_Complete,10/06/2021,10/06/2021,10/06/2021,10/06/2021,"SI--UB-2-35 FS,SI--UE-2E36 FS,SI--UE2-E37 FS,SI--UM-2-35 FS,SI--UR-2-35 FS,SI--PM-2-30 FS","SI--UB-2-35,SI--UE-2E36,SI--UE2-E37,SI--UM-2-35,SI--UR-2-35,SI--PM-2-30","SI20UZJ2-82 FS,SI20UZJ2-84 FS,SI20UZJ2-83 FS,SI20UZJ2-82 FF","SI20UZJ2-82,SI20UZJ2-84,SI20UZJ2-83,SI20UZJ2-82",44,44,44,44,10,10,10,10,16,,"HK1003 -Blackpoint D2 - Rev.0E DD30092021"
1-3773,SI20UZJ2-85,"CLIENT - REVIEW - DETAIL DESIGN CONCRETE FENCES&GATES",5121,"HK1003-Rev.0E-3",TT_Task,"55902",-,-,-,0,TK_NotStart,10/10/2021,,03/11/2021,,"SI20UZJ2-83 FS,SI20UZJ2-84 FS,SI20UZJ2-84 FF,SI20UZJ2-84 SS","SI20UZJ2-83,SI20UZJ2-84,SI20UZJ2-84,SI20UZJ2-84","SI20UZJ2-86 SS","SI20UZJ2-86",62,,65,,14,,15,,33,2816,"HK1003 -Blackpoint D2 - Rev.0E DD30092021"
1-3774,SI20UZJ2-86,"BD - SUBMISSION & APPROVAL - DETAIL DESIGN CONCRETE FENCES&GATES",5121,"HK1003-Rev.0E-3",TT_Task,"55902",-,-,-,0,TK_NotStart,10/10/2021,,08/12/2021,,"SI20UZJ2-85 SS,SI-P221-330& FS,SI--UBA2-96 SS","SI20UZJ2-85,SI-P221-330&,SI--UBA2-96","SI20UZJ2-87 FS,SI20UZJ2-87 FF","SI20UZJ2-87,SI20UZJ2-87",62,,70,,14,,16,,33,2816,"HK1003 -Blackpoint D2 - Rev.0E DD30092021"
1-3775,SI20UZJ2-87,"BD - CONSENT LETTER - DETAIL DESIGN CONCRETE FENCES&GATES",5121,"HK1003-Rev.0E-3",TT_Task,"55902",-,-,-,0,TK_NotStart,09/12/2021,,05/01/2022,,"SI20UZJ2-86 FS,SI20UZJ2-86 FF","SI20UZJ2-86,SI20UZJ2-86","SI20UZJ2-88 FS,SI20UZJ2-88 FF","SI20UZJ2-88,SI20UZJ2-88",70,,74,,16,,17,,41,2816,"HK1003 -Blackpoint D2 - Rev.0E DD30092021"
1-3776,SI20UZJ-99,"ERECTION FENCES&GATES",5121,"HK1003-Rev.0E-3",TT_Task,"55902",-,-,-,0,TK_NotStart,23/02/2023,,03/05/2023,,"SI20UZJ5-66 FS,SI20BAW5A15 FF","SI20UZJ5-66,SI20BAW5A15","SI20MB-9-15 FS,SI20UZA5-23 FF","SI20MB-9-15,SI20UZA5-23",133,,143,,31,,33,,91,464,"HK1003 -Blackpoint D2 - Rev.0E DD30092021"
1-3777,SI20UBL2C-65,"HANDRAILS AND GRATING DWGS & CONNECTION FORCE REPORT 20UBL",5121,"HK1003-Rev.0E-3",TT_Task,"55902",-,-,-,0,TK_NotStart,23/11/2021,,13/12/2021,,"SI20UBL2C-60 FF","SI20UBL2C-60","SI20UBL2C-80 FS,SI20UBL2C-70 FS","SI20UBL2C-80,SI20UBL2C-70",68,,71,,15,,16,,39,600,"HK1003 -Blackpoint D2 - Rev.0E DD30092021"
1-3778,SI20UBL5C-45,"(RFE) STEEL STRUCTURE 20UBL",5121,"HK1003-Rev.0E-3",TT_FinMile,"55902",-,-,-,0,TK_NotStart,07/10/2022,,07/10/2022,,"SI20UBL5C-35 FS","SI20UBL5C-35","SI20BAA7-15 FF,SI20BAA7-66 FS","SI20BAA7-15,SI20BAA7-66",113,,113,,26,,26,,82,432,"HK1003 -Blackpoint D2 - Rev.0E DD30092021"
1-3779,SI20UBL2C-55,"(MS3) STEEL STRUCTURE FINAL DIMENSIONS, LOADS AVAILABLE 20UBL",5121,"HK1003-Rev.0E-3",TT_FinMile,"55902",-,-,-,100,TK_Complete,09/08/2021,09/08/2021,09/08/2021,09/08/2021,"SI--UBF2B60 FS,SI--BAA2-60 FS,SI20ACA2-35 FS","SI--UBF2B60,SI--BAA2-60,SI20ACA2-35","SI20UBL2C-60 FS,SI20UBL2C-81 FS","SI20UBL2C-60,SI20UBL2C-81",53,53,53,53,12,12,12,12,25,,"HK1003 -Blackpoint D2 - Rev.0E DD30092021"
1-3780,SI20UBL2C-80,"(F) DETAIL DESIGN STEEL STRUCTURE WITH CONTRACTOR 20UBL",5121,"HK1003-Rev.0E-3",TT_FinMile,"55902",-,-,-,0,TK_NotStart,08/04/2022,,08/04/2022,,"SI20UBL2C-65 FS,SI20UBL2C-60 FS,SI20UBL2C-75 FS","SI20UBL2C-65,SI20UBL2C-60,SI20UBL2C-75","SI20UBL3C-25 FS","SI20UBL3C-25",87,,87,,20,,20,,57,600,"HK1003 -Blackpoint D2 - Rev.0E DD30092021"
1-3781,SI20UBL2C-60,"DETAIL DESIGN STEEL STRUCTURE 20UBL",5121,"HK1003-Rev.0E-3",TT_Task,"55902",-,-,-,0,TK_NotStart,29/10/2021,,13/12/2021,,"SI20UBL2C-55 FS,SI20UBL2C-81 FS","SI20UBL2C-55,SI20UBL2C-81","SI20UBL2C-80 FS,SI20UBL2C-70 FS,SI20UBL2C-65 FF","SI20UBL2C-80,SI20UBL2C-70,SI20UBL2C-65",64,,71,,15,,16,,36,600,"HK1003 -Blackpoint D2 - Rev.0E DD30092021"
1-3782,SI20UBL5C-30,"(HS) START ERECTION STEEL STRUCTURE 20UBL",5121,"HK1003-Rev.0E-3",TT_Mile,"55902",-,-,-,0,TK_NotStart,10/09/2022,,10/09/2022,,"SI20UBL3C-25 FS,SI20UBF5B45 FS,SI20BAT7-15 SS","SI20UBL3C-25,SI20UBF5B45,SI20BAT7-15","SI20UBL5C-35 FS","SI20UBL5C-35",110,,110,,25,,25,,80,432,"HK1003 -Blackpoint D2 - Rev.0E DD30092021"
1-3783,SI20UBL5C-35,"ERECTION STEEL STRUCTURE 20UBL",5121,"HK1003-Rev.0E-3",TT_Task,"55902",-,-,-,0,TK_NotStart,10/09/2022,,07/10/2022,,"SI20UBL5C-30 FS","SI20UBL5C-30","SI20UBL5C-45 FS","SI20UBL5C-45",110,,113,,25,,26,,80,432,"HK1003 -Blackpoint D2 - Rev.0E DD30092021"
1-3784,SI20UBL3C-25,"FABRICATION DESIGN FABRICATION TRANSPORT STEEL STRUCTURE 20UBL",5121,"HK1003-Rev.0E-3",TT_Task,"55902",-,-,-,0,TK_NotStart,30/04/2022,,05/08/2022,,"SI20UBL2C-80 FS","SI20UBL2C-80","SI20UBL5C-30 FS","SI20UBL5C-30",91,,104,,21,,24,,60,432,"HK1003 -Blackpoint D2 - Rev.0E DD30092021"
1-3785,SI20UBL2C-70,"BD - SUBMISSION & APPROVAL - DETAIL DESIGN STEEL 20UBL",5121,"HK1003-Rev.0E-3",TT_Task,"55902",-,-,-,0,TK_NotStart,14/12/2021,,11/02/2022,,"SI20UBL2C-60 FS,SI20UBL2C-65 FS,SI-P221-574& FS","SI20UBL2C-60,SI20UBL2C-65,SI-P221-574&","SI20UBL2C-75 FS","SI20UBL2C-75",71,,79,,16,,18,,42,600,"HK1003 -Blackpoint D2 - Rev.0E DD30092021"
1-3786,SI20UBL2C-75,"BD - CONSENT LETTER - DETAIL DESIGN STEEL 20UBL",5121,"HK1003-Rev.0E-3",TT_Task,"55902",-,-,-,0,TK_NotStart,12/02/2022,,11/03/2022,,"SI20UBL2C-70 FS","SI20UBL2C-70","SI20UBL2C-80 FS","SI20UBL2C-80",80,,83,,18,,19,,49,600,"HK1003 -Blackpoint D2 - Rev.0E DD30092021"
1-3787,SI20BFF3-80,"(RFS) READY FOR SHIPMENT LV SWITCHGEAR FOR HRSG 20BFF/BMFF",5121,"HK1003-Rev.0E-3",TT_FinMile,"55902",-,-,-,0,TK_NotStart,13/05/2022,,13/05/2022,,"SI20BFF3-25 FS","SI20BFF3-25","SI20BFF4-25 FS","SI20BFF4-25",92,,92,,21,,21,,64,880,"HK1003 -Blackpoint D2 - Rev.0E DD30092021"
1-3788,SI20TP-260&,"TP-E4 - D2 GSUT GIL CABLE BOX (D2 Generator Transformer Bay)",5121,"HK1003-Rev.0E-3",TT_Mile,"55902",-,-,-,0,TK_NotStart,05/12/2022,,05/12/2022,,"SI-----1-05 FS","SI-----1-05","SI-----8-07& FS,CL20ACA7-80 FS,SI20TPE4A7-20 FS","SI-----8-07&,CL20ACA7-80,SI20TPE4A7-20",122,,122,,28,,28,,86,192,"HK1003 -Blackpoint D2 - Rev.0E DD30092021"
1-3789,SI-P221-20&,"BD - SUBMISSION - BUILDING DETAIL DESIGN CONCRETE 20UMC",5121,"HK1003-Rev.0E-3",TT_Mile,"55902",-,-,-,100,TK_Complete,11/06/2021,11/06/2021,11/06/2021,11/06/2021,"SI-----1-05 FS,SI-P221-365&3 FS","SI-----1-05,SI-P221-365&3","SI-P221-30& SS,SI20UMC2B40 FS","SI-P221-30&,SI20UMC2B40",44,44,44,44,10,10,10,10,17,,"HK1003 -Blackpoint D2 - Rev.0E DD30092021"
1-3790,SI-P221-75&,"BD - SUBMISSION - DETAIL DESIGN CONCRETE - 20UHA",5121,"HK1003-Rev.0E-3",TT_Mile,"55902",-,-,-,100,TK_Complete,02/08/2021,02/08/2021,02/08/2021,02/08/2021,"SI-P221-70& FS","SI-P221-70&","SI-P221-120& SS,SI--UHA2-79 FS","SI-P221-120&,SI--UHA2-79",52,52,52,52,12,12,12,12,24,,"HK1003 -Blackpoint D2 - Rev.0E DD30092021"
1-3791,SI-P221-255&,"BD - SUBMISSION - DETAIL DESIGN CONCRETE 20URA",5121,"HK1003-Rev.0E-3",TT_Mile,"55902",-,-,-,100,TK_Complete,30/06/2021,30/06/2021,30/06/2021,30/06/2021,"SI-P221-245& FS","SI-P221-245&","","",47,47,47,47,11,11,11,11,19,,"HK1003 -Blackpoint D2 - Rev.0E DD30092021"
1-3792,SI-P221-265&,"BD - SUBMISSION - DETAIL DESIGN CONCRETE 20URD",5121,"HK1003-Rev.0E-3",TT_Mile,"55902",-,-,-,100,TK_Complete,14/07/2021,14/07/2021,14/07/2021,14/07/2021,"SI-P221-260& FS","SI-P221-260&","SI--URD2-78 FS","SI--URD2-78",49,49,49,49,11,11,11,11,22,,"HK1003 -Blackpoint D2 - Rev.0E DD30092021"
1-3793,SI-P221-105&,"BD - SUBMISSION - DETAIL DESIGN CONCRETE 20ULA",5121,"HK1003-Rev.0E-3",TT_Mile,"55902",-,-,-,100,TK_Complete,02/08/2021,02/08/2021,02/08/2021,02/08/2021,"SI-P221-100& FS","SI-P221-100&","SI--ULA2-78 FS","SI--ULA2-78",52,52,52,52,12,12,12,12,24,,"HK1003 -Blackpoint D2 - Rev.0E DD30092021"
1-3794,SI-P221-10&,"BD - SUBMISSION - TURBOSET DETAIL DESIGN CONCRETE (AMENDMENT) 20UMC",5121,"HK1003-Rev.0E-3",TT_Mile,"55902",-,-,-,100,TK_Complete,03/08/2021,03/08/2021,03/08/2021,03/08/2021,"SI-----1-05 FS,SI-P221-365&3 FS","SI-----1-05,SI-P221-365&3","SI--UMC2A77 FS","SI--UMC2A77",52,52,52,52,12,12,12,12,24,,"HK1003 -Blackpoint D2 - Rev.0E DD30092021"
1-3795,SI-P221-150&,"BD - SUBMISSION - DETAIL DESIGN CONCRETE  20UBE/UBF",5121,"HK1003-Rev.0E-3",TT_Mile,"55902",-,-,-,100,TK_Complete,15/08/2021,15/08/2021,15/08/2021,15/08/2021,"SI-----1-05 FS","SI-----1-05","SI--UBF2-80 FS","SI--UBF2-80",54,54,54,54,12,12,12,12,26,,"HK1003 -Blackpoint D2 - Rev.0E DD30092021"
1-3796,SI-P221-275&,"BD - SUBMISSION - DETAIL DESIGN CONCRETE 01UEN",5121,"HK1003-Rev.0E-3",TT_Mile,"55902",-,-,-,0,TK_NotStart,11/10/2021,,11/10/2021,,"SI-----1-05 FS","SI-----1-05","SI20UEN2-100 FS","SI20UEN2-100",62,,62,,14,,14,,33,1248,"HK1003 -Blackpoint D2 - Rev.0E DD30092021"
1-3797,SI-P221-95&,"BD - SUBMISSION - DETAIL DESIGN CONCRETE 20UEN",5121,"HK1003-Rev.0E-3",TT_Mile,"55902",-,-,-,0,TK_NotStart,10/10/2021,,10/10/2021,,"SI-P221-90& FS","SI-P221-90&","SI20UEN2-80 FS","SI20UEN2-80",62,,62,,14,,14,,33,16,"HK1003 -Blackpoint D2 - Rev.0E DD30092021"
1-3798,SI-P221-80&,"BD - SUBMISSION - DETAIL DESIGN CONCRETE - 20UBA1110/20",5121,"HK1003-Rev.0E-3",TT_Mile,"55902",-,-,-,0,TK_NotStart,10/10/2021,,10/10/2021,,"SI-----1-05 FS","SI-----1-05","SI-P221-220& SS,SI-P221-110& SS,SI20UBA2-30 FS","SI-P221-220&,SI-P221-110&,SI20UBA2-30",62,,62,,14,,14,,33,256,"HK1003 -Blackpoint D2 - Rev.0E DD30092021"
1-3799,SI-P221-165&,"BD - SUBMISSION - DETAIL DESIGN CONCRETE - 20UBD01/02",5121,"HK1003-Rev.0E-3",TT_Mile,"55902",-,-,-,0,TK_NotStart,10/10/2021,,10/10/2021,,"SI-----1-05 FS","SI-----1-05","SI20UBD2-25 FS","SI20UBD2-25",62,,62,,14,,14,,33,1112,"HK1003 -Blackpoint D2 - Rev.0E DD30092021"
1-3800,SI-P221-130&,"BD - SUBMISSION - DETAIL DESIGN CONCRETE - UBA7xxx",5121,"HK1003-Rev.0E-3",TT_Mile,"55902",-,-,-,100,TK_Complete,02/08/2021,02/08/2021,02/08/2021,02/08/2021,"SI-P221-125& FS","SI-P221-125&","SI-P221-220& SS,SI--UBA2-93 FS","SI-P221-220&,SI--UBA2-93",52,52,52,52,12,12,12,12,24,,"HK1003 -Blackpoint D2 - Rev.0E DD30092021"
1-3801,SI-P221-135&,"BD - SUBMISSION - DETAIL DESIGN CONCRETE - UBA7910/7920",5121,"HK1003-Rev.0E-3",TT_Mile,"55902",-,-,-,0,TK_NotStart,10/10/2021,,10/10/2021,,"SI-----1-05 FS","SI-----1-05","SI--UBA2-96 FS,SI20UBZ2-94 SS","SI--UBA2-96,SI20UBZ2-94",62,,62,,14,,14,,33,624,"HK1003 -Blackpoint D2 - Rev.0E DD30092021"
1-3802,SI-P221-120&,"BD - SUBMISSION - DETAIL DESIGN CONCRETE - 20UVM01",5121,"HK1003-Rev.0E-3",TT_Mile,"55902",-,-,-,100,TK_Complete,02/08/2021,02/08/2021,02/08/2021,02/08/2021,"SI-P221-75& SS,SI-P221-115& FS","SI-P221-75&,SI-P221-115&","SI20UVM2-80 FS","SI20UVM2-80",52,52,52,52,12,12,12,12,24,,"HK1003 -Blackpoint D2 - Rev.0E DD30092021"
1-3803,SI-P221-220&,"BD - SUBMISSION - DETAIL DESIGN CONCRETE - 20UBA8110/20",5121,"HK1003-Rev.0E-3",TT_Mile,"55902",-,-,-,0,TK_NotStart,14/11/2021,,14/11/2021,,"SI-P221-130& SS,SI-P221-80& SS","SI-P221-130&,SI-P221-80&","SI--UBA2-102 FS,SI-P221-270& FS","SI--UBA2-102,SI-P221-270&",67,,67,,15,,15,,38,344,"HK1003 -Blackpoint D2 - Rev.0E DD30092021"
1-3804,SI-P221-225&,"BD - SUBMISSION - DETAIL DESIGN CONCRETE - 20UBD03/04",5121,"HK1003-Rev.0E-3",TT_Mile,"55902",-,-,-,0,TK_NotStart,16/10/2021,,16/10/2021,,"SI-----1-05 FS","SI-----1-05","SI20UBD2E91 FS","SI20UBD2E91",63,,63,,14,,14,,34,1832,"HK1003 -Blackpoint D2 - Rev.0E DD30092021"
1-3805,SI-P221-310&,"BD - SUBMISSION - DETAIL DESIGN CONCRETE - 20ULY/UMY",5121,"HK1003-Rev.0E-3",TT_Mile,"55902",-,-,-,100,TK_Complete,02/08/2021,02/08/2021,02/08/2021,02/08/2021,"SI-P221-305& FS","SI-P221-305&","SI20UMY2-55 FS","SI20UMY2-55",52,52,52,52,12,12,12,12,24,,"HK1003 -Blackpoint D2 - Rev.0E DD30092021"
1-3806,SI-P221-280&,"BD - SUBMISSION - DETAIL DESIGN CONCRETE 20UEY03-05",5121,"HK1003-Rev.0E-3",TT_Mile,"55902",-,-,-,0,TK_NotStart,10/10/2021,,10/10/2021,,"SI-----1-05 FS","SI-----1-05","SI20UEY2-55 FS","SI20UEY2-55",62,,62,,14,,14,,33,1048,"HK1003 -Blackpoint D2 - Rev.0E DD30092021"
1-3807,SI-P221-300&,"BD - SUBMISSION - DETAIL DESIGN CONCRETE 20UEY01",5121,"HK1003-Rev.0E-3",TT_Mile,"55902",-,-,-,100,TK_Complete,27/07/2021,27/07/2021,27/07/2021,27/07/2021,"SI-P221-295& FS,SI-P221-365&3 FS","SI-P221-295&,SI-P221-365&3","SI20UEY2-66 FS","SI20UEY2-66",51,51,51,51,12,12,12,12,23,,"HK1003 -Blackpoint D2 - Rev.0E DD30092021"
1-3808,SI-P221-30&,"BD - SUBMISSION - DETAIL DESIGN CONCRETE 20UPY",5121,"HK1003-Rev.0E-3",TT_Mile,"55902",-,-,-,100,TK_Complete,11/06/2021,11/06/2021,11/06/2021,11/06/2021,"SI-P221-20& SS,SI-P221-25& FS,SI-P221-365&3 FS","SI-P221-20&,SI-P221-25&,SI-P221-365&3","SI20UPY2-25 FS","SI20UPY2-25",44,44,44,44,10,10,10,10,17,,"HK1003 -Blackpoint D2 - Rev.0E DD30092021"
1-3809,SI-P221-45&,"BD - SUBMISSION - DETAIL DESIGN CONCRETE 20UMX",5121,"HK1003-Rev.0E-3",TT_Mile,"55902",-,-,-,100,TK_Complete,10/09/2021,10/09/2021,10/09/2021,10/09/2021,"SI-----1-05 FS,SI--UMX2-70 SS","SI-----1-05,SI--UMX2-70","SI--UMX2-65 FS","SI--UMX2-65",57,57,57,57,13,13,13,13,29,,"HK1003 -Blackpoint D2 - Rev.0E DD30092021"
1-3810,SI-P221-290&,"BD - SUBMISSION - DETAIL DESIGN CONCRETE 20UMX02",5121,"HK1003-Rev.0E-3",TT_Mile,"55902",-,-,-,0,TK_NotStart,10/10/2021,,10/10/2021,,"SI-----1-05 FS","SI-----1-05","SI20UMX2-82 FS","SI20UMX2-82",62,,62,,14,,14,,33,1160,"HK1003 -Blackpoint D2 - Rev.0E DD30092021"
1-3811,SI-P221-35&,"BD - SUBMISSION - DETAIL DESIGN CONCRETE 20UTG01",5121,"HK1003-Rev.0E-3",TT_Mile,"55902",-,-,-,0,TK_NotStart,21/10/2021,,21/10/2021,,"SI-----1-05 FS","SI-----1-05","SI20UTG2-30 FS","SI20UTG2-30",63,,63,,14,,14,,35,2768,"HK1003 -Blackpoint D2 - Rev.0E DD30092021"
1-3812,SI-P221-315&,"BD - SUBMISSION - DETAIL DESIGN CONCRETE - 01UBA9010/20",5121,"HK1003-Rev.0E-3",TT_Mile,"55902",-,-,-,0,TK_NotStart,14/11/2021,,14/11/2021,,"SI-----1-05 FS","SI-----1-05","SI20UBA2C-40 FS","SI20UBA2C-40",67,,67,,15,,15,,38,392,"HK1003 -Blackpoint D2 - Rev.0E DD30092021"
1-3813,SI-P221-210&,"61 - BD - SUBMISSION - DETAIL DESIGN CONCRETE - 20ULY01",5121,"HK1003-Rev.0E-3",TT_Mile,"55902",-,-,-,0,TK_NotStart,10/10/2021,,10/10/2021,,"SI-----1-05 FS","SI-----1-05","SI20ULY2-30 FS","SI20ULY2-30",62,,62,,14,,14,,33,2312,"HK1003 -Blackpoint D2 - Rev.0E DD30092021"
1-3814,SI-P221-200&,"BD - SUBMISSION - DETAIL DESIGN CONCRETE - UBY01",5121,"HK1003-Rev.0E-3",TT_Mile,"55902",-,-,-,0,TK_NotStart,19/10/2021,,19/10/2021,,"SI-P221-230& SS,SI-----1-05 FS","SI-P221-230&,SI-----1-05","SI20UBY2-30 FS","SI20UBY2-30",63,,63,,14,,14,,35,1264,"HK1003 -Blackpoint D2 - Rev.0E DD30092021"
1-3815,SI-P221-195&,"BD - SUBMISSION - DETAIL DESIGN CONCRETE 20UEX01",5121,"HK1003-Rev.0E-3",TT_Mile,"55902",-,-,-,0,TK_NotStart,11/12/2021,,11/12/2021,,"SI-----1-05 FS","SI-----1-05","SI20UEX2-45 FS,SI20UEX2-109 FS","SI20UEX2-45,SI20UEX2-109",71,,71,,16,,16,,42,552,"HK1003 -Blackpoint D2 - Rev.0E DD30092021"
1-3816,SI-P221-180&,"BD - SUBMISSION - DETAIL DESIGN CONCRETE - 20UBN",5121,"HK1003-Rev.0E-3",TT_Mile,"55902",-,-,-,0,TK_NotStart,11/12/2021,,11/12/2021,,"SI-----1-05 FS","SI-----1-05","SI20UBN2-30 FS,SI20UBN2-109 FS,SI20UBN2-109 SS","SI20UBN2-30,SI20UBN2-109,SI20UBN2-109",71,,71,,16,,16,,42,952,"HK1003 -Blackpoint D2 - Rev.0E DD30092021"
1-3817,SI-P221-40&,"BD - SUBMISSION - DETAIL DESIGN CONCRETE 20UTG07",5121,"HK1003-Rev.0E-3",TT_Mile,"55902",-,-,-,0,TK_NotStart,10/10/2021,,10/10/2021,,"SI-----1-05 FS","SI-----1-05","SI20UTG2-46 FS","SI20UTG2-46",62,,62,,14,,14,,33,2024,"HK1003 -Blackpoint D2 - Rev.0E DD30092021"
1-3818,SI-P221-85&,"BD - SUBMISSION - DETAIL DESIGN CONCRETE 20UTG04",5121,"HK1003-Rev.0E-3",TT_Mile,"55902",-,-,-,0,TK_NotStart,21/10/2021,,21/10/2021,,"SI-----1-05 FS","SI-----1-05","SI20UTG2-54 FS","SI20UTG2-54",63,,63,,14,,14,,35,2288,"HK1003 -Blackpoint D2 - Rev.0E DD30092021"
1-3819,SI-P221-140&,"BD - SUBMISSION - DETAIL DESIGN CONCRETE 20UTG02",5121,"HK1003-Rev.0E-3",TT_Mile,"55902",-,-,-,0,TK_NotStart,10/10/2021,,10/10/2021,,"SI-----1-05 FS","SI-----1-05","SI-P221-160& SS,SI20UTG2-62 FS","SI-P221-160&,SI20UTG2-62",62,,62,,14,,14,,33,2376,"HK1003 -Blackpoint D2 - Rev.0E DD30092021"
1-3820,SI-P221-160&,"BD - SUBMISSION - DETAIL DESIGN CONCRETE 20UTG03",5121,"HK1003-Rev.0E-3",TT_Mile,"55902",-,-,-,0,TK_NotStart,10/10/2021,,10/10/2021,,"SI-P221-140& SS","SI-P221-140&","SI20UTG2-70 FS","SI20UTG2-70",62,,62,,14,,14,,33,2376,"HK1003 -Blackpoint D2 - Rev.0E DD30092021"
1-3821,SI-P221-240&,"BD - SUBMISSION - DETAIL DESIGN CONCRETE 20UTG05",5121,"HK1003-Rev.0E-3",TT_Mile,"55902",-,-,-,0,TK_NotStart,21/10/2021,,21/10/2021,,"SI-----1-05 FS","SI-----1-05","SI20UTG2-78 FS","SI20UTG2-78",63,,63,,14,,14,,35,3328,"HK1003 -Blackpoint D2 - Rev.0E DD30092021"
1-3822,SI-P221-320&,"BD - SUBMISSION - DETAIL DESIGN CONCRETE 20UTG06",5121,"HK1003-Rev.0E-3",TT_Mile,"55902",-,-,-,0,TK_NotStart,21/10/2021,,21/10/2021,,"SI-----1-05 FS","SI-----1-05","SI20UTG2-86 FS","SI20UTG2-86",63,,63,,14,,14,,35,3328,"HK1003 -Blackpoint D2 - Rev.0E DD30092021"
1-3823,SI-P221-185&,"BD - SUBMISSION - DETAIL DESIGN CONCRETE - UBY02",5121,"HK1003-Rev.0E-3",TT_Mile,"55902",-,-,-,0,TK_NotStart,10/10/2021,,10/10/2021,,"SI-----1-05 FS","SI-----1-05","SI20UBY2-46 FS,SI20UBY2-67 FS","SI20UBY2-46,SI20UBY2-67",62,,62,,14,,14,,33,1048,"HK1003 -Blackpoint D2 - Rev.0E DD30092021"
1-3824,SI-P221-230&,"BD - SUBMISSION - DETAIL DESIGN CONCRETE - UBY03",5121,"HK1003-Rev.0E-3",TT_Mile,"55902",-,-,-,0,TK_NotStart,19/10/2021,,19/10/2021,,"SI-----1-05 FS","SI-----1-05","SI-P221-200& SS,SI20UBY2-54 FS","SI-P221-200&,SI20UBY2-54",63,,63,,14,,14,,35,1264,"HK1003 -Blackpoint D2 - Rev.0E DD30092021"
1-3825,SI-P221-270&,"BD - SUBMISSION - DETAIL DESIGN CONCRETE - UBY04/05",5121,"HK1003-Rev.0E-3",TT_Mile,"55902",-,-,-,0,TK_NotStart,15/11/2021,,15/11/2021,,"SI-P221-220& FS","SI-P221-220&","SI-P221-285& SS,SI20UBY2-62 FS","SI-P221-285&,SI20UBY2-62",67,,67,,15,,15,,38,336,"HK1003 -Blackpoint D2 - Rev.0E DD30092021"
1-3826,SI-P221-50&,"BD - SUBMISSION - DETAIL DESIGN CONCRETE 20USX",5121,"HK1003-Rev.0E-3",TT_Mile,"55902",-,-,-,0,TK_NotStart,05/11/2021,,05/11/2021,,"SI-----1-05 FS","SI-----1-05","SI20USX2-30 FS","SI20USX2-30",65,,65,,15,,15,,37,2392,"HK1003 -Blackpoint D2 - Rev.0E DD30092021"
1-3827,SI-P221-340&,"BD - SUBMISSION - DETAIL DESIGN CONCRETE 20UQX",5121,"HK1003-Rev.0E-3",TT_Mile,"55902",-,-,-,0,TK_NotStart,10/10/2021,,10/10/2021,,"SI-----1-05 FS","SI-----1-05","SI20UQX2-30 FS","SI20UQX2-30",62,,62,,14,,14,,33,3032,"HK1003 -Blackpoint D2 - Rev.0E DD30092021"
1-3828,SI-P221-345&,"BD - SUBMISSION - DETAIL DESIGN CONCRETE - 20UQY01",5121,"HK1003-Rev.0E-3",TT_Mile,"55902",-,-,-,0,TK_NotStart,10/10/2021,,10/10/2021,,"SI-----1-05 FS","SI-----1-05","SI-P221-350& SS,SI20UQY2-86 FS","SI-P221-350&,SI20UQY2-86",62,,62,,14,,14,,33,808,"HK1003 -Blackpoint D2 - Rev.0E DD30092021"
1-3829,SI-P221-360&,"BD - SUBMISSION - DETAIL DESIGN CONCRETE - 20UQZ",5121,"HK1003-Rev.0E-3",TT_Mile,"55902",-,-,-,0,TK_NotStart,10/10/2021,,10/10/2021,,"SI-P221-355& SS","SI-P221-355&","SI20UQZ2-98 FS","SI20UQZ2-98",62,,62,,14,,14,,33,1200,"HK1003 -Blackpoint D2 - Rev.0E DD30092021"
1-3830,SI-P221-65&,"BD - SUBMISSION - DETAIL DESIGN CONCRETE - HRSG BLOWDOWN PIT DESIGN 20UHW",5121,"HK1003-Rev.0E-3",TT_Mile,"55902",-,-,-,100,TK_Complete,02/08/2021,02/08/2021,02/08/2021,02/08/2021,"SI-P221-60& FS","SI-P221-60&","SI20UHW2-45 FS","SI20UHW2-45",52,52,52,52,12,12,12,12,24,,"HK1003 -Blackpoint D2 - Rev.0E DD30092021"
1-3831,SI-P221-205&,"BD - SUBMISSION - DETAIL DESIGN CONCRETE - 20UBZ01",5121,"HK1003-Rev.0E-3",TT_Mile,"55902",-,-,-,0,TK_NotStart,10/10/2021,,10/10/2021,,"SI-----1-05 FS","SI-----1-05","SI20UBZ2-70 FS","SI20UBZ2-70",62,,62,,14,,14,,33,1000,"HK1003 -Blackpoint D2 - Rev.0E DD30092021"
1-3832,SI-P221-190&,"BD - SUBMISSION - DETAIL DESIGN CONCRETE - 20UBZ04",5121,"HK1003-Rev.0E-3",TT_Mile,"55902",-,-,-,0,TK_NotStart,10/10/2021,,10/10/2021,,"SI-----1-05 FS","SI-----1-05","SI20UBZ2-78 FS","SI20UBZ2-78",62,,62,,14,,14,,33,1520,"HK1003 -Blackpoint D2 - Rev.0E DD30092021"
1-3833,SI-P221-235&,"BD - SUBMISSION - DETAIL DESIGN CONCRETE - 20UBZ02",5121,"HK1003-Rev.0E-3",TT_Mile,"55902",-,-,-,0,TK_NotStart,10/10/2021,,10/10/2021,,"SI-----1-05 FS","SI-----1-05","SI20UBZ2-86 FS","SI20UBZ2-86",62,,62,,14,,14,,33,1824,"HK1003 -Blackpoint D2 - Rev.0E DD30092021"
1-3834,SI-P221-350&,"BD - SUBMISSION - DETAIL DESIGN CONCRETE - 20UQY02",5121,"HK1003-Rev.0E-3",TT_Mile,"55902",-,-,-,0,TK_NotStart,10/10/2021,,10/10/2021,,"SI-P221-345& SS","SI-P221-345&","SI-P221-355& SS,SI20UQY2-94 FS","SI-P221-355&,SI20UQY2-94",62,,62,,14,,14,,33,1200,"HK1003 -Blackpoint D2 - Rev.0E DD30092021"
1-3835,SI-P221-355&,"BD - SUBMISSION - DETAIL DESIGN CONCRETE - 20UQY03",5121,"HK1003-Rev.0E-3",TT_Mile,"55902",-,-,-,0,TK_NotStart,10/10/2021,,10/10/2021,,"SI-P221-350& SS","SI-P221-350&","SI-P221-360& SS,SI20UQY2-102 FS","SI-P221-360&,SI20UQY2-102",62,,62,,14,,14,,33,1200,"HK1003 -Blackpoint D2 - Rev.0E DD30092021"
1-3836,SI-P221-285&,"BD - SUBMISSION - DETAIL DESIGN CONCRETE 20UGU02",5121,"HK1003-Rev.0E-3",TT_Mile,"55902",-,-,-,0,TK_NotStart,15/11/2021,,15/11/2021,,"SI-P221-270& SS","SI-P221-270&","SI20UGU2-64 FS","SI20UGU2-64",67,,67,,15,,15,,38,3136,"HK1003 -Blackpoint D2 - Rev.0E DD30092021"
1-3837,SI-P221-110&,"BD - SUBMISSION - DETAIL DESIGN CONCRETE  20UHX",5121,"HK1003-Rev.0E-3",TT_Mile,"55902",-,-,-,0,TK_NotStart,10/10/2021,,10/10/2021,,"SI-P221-80& SS","SI-P221-80&","SI20UHX2-30 FS","SI20UHX2-30",62,,62,,14,,14,,33,3056,"HK1003 -Blackpoint D2 - Rev.0E DD30092021"
1-3838,SI-P221-15&,"BD - SUBMISSION - DETAIL DESIGN CONCRETE - PRELIMINARY - 20UMC",5121,"HK1003-Rev.0E-3",TT_Mile,"55902",-,-,-,100,TK_Complete,16/03/2021,16/03/2021,16/03/2021,16/03/2021,"SI-----1-05 FS,SI-P221-365&1 FS","SI-----1-05,SI-P221-365&1","SI20UMC2B04 FS","SI20UMC2B04",32,32,32,32,7,7,7,7,6,,"HK1003 -Blackpoint D2 - Rev.0E DD30092021"
1-3839,SI-P221-25&,"BD - SUBMISSION - DETAIL DESIGN CONCRETE - PRELIMINARY - 20UPY",5121,"HK1003-Rev.0E-3",TT_Mile,"55902",-,-,-,100,TK_Complete,16/03/2021,16/03/2021,16/03/2021,16/03/2021,"SI-----1-05 FS,SI-P221-365&1 FS","SI-----1-05,SI-P221-365&1","SI-P221-30& FS,SI20UPY2-04 FS","SI-P221-30&,SI20UPY2-04",32,32,32,32,7,7,7,7,6,,"HK1003 -Blackpoint D2 - Rev.0E DD30092021"
1-3840,SI-P221-295&,"BD - SUBMISSION - DETAIL DESIGN CONCRETE - PRELIMINARY - 20UEY01",5121,"HK1003-Rev.0E-3",TT_Mile,"55902",-,-,-,100,TK_Complete,16/03/2021,16/03/2021,16/03/2021,16/03/2021,"SI-----1-05 FS,SI-P221-365&1 FS","SI-----1-05,SI-P221-365&1","SI-P221-300& FS,SI20UEY2B04 FS","SI-P221-300&,SI20UEY2B04",32,32,32,32,7,7,7,7,6,,"HK1003 -Blackpoint D2 - Rev.0E DD30092021"
1-3841,SI-P221-260&,"BD - SUBMISSION - DETAIL DESIGN CONCRETE - PRELIMINARY - 20URD",5121,"HK1003-Rev.0E-3",TT_Mile,"55902",-,-,-,100,TK_Complete,16/03/2021,16/03/2021,16/03/2021,16/03/2021,"SI-----1-05 FS,SI-P221-365&1 FS","SI-----1-05,SI-P221-365&1","SI-P221-265& FS,SI20URD2B04 FS","SI-P221-265&,SI20URD2B04",32,32,32,32,7,7,7,7,6,,"HK1003 -Blackpoint D2 - Rev.0E DD30092021"
1-3842,SI-P221-245&,"BD - SUBMISSION - DETAIL DESIGN CONCRETE FOUNDATION  - PRELIMINARY - 20URA",5121,"HK1003-Rev.0E-3",TT_Mile,"55902",-,-,-,100,TK_Complete,16/03/2021,16/03/2021,16/03/2021,16/03/2021,"SI-----1-05 FS,SI-P221-365&1 FS","SI-----1-05,SI-P221-365&1","SI-P221-255& FS,SI20URA2B04 FS","SI-P221-255&,SI20URA2B04",32,32,32,32,7,7,7,7,6,,"HK1003 -Blackpoint D2 - Rev.0E DD30092021"
1-3843,SI-P221-250&,"BD - SUBMISSION - DETAIL DESIGN CONCRETE SUPERSTRUCTURE - 1ST SUBMISSION - 20URA",5121,"HK1003-Rev.0E-3",TT_Mile,"55902",-,-,-,100,TK_Complete,25/06/2021,25/06/2021,25/06/2021,25/06/2021,"SI-----1-05 FS","SI-----1-05","SI20URA2B7 FS","SI20URA2B7",46,46,46,46,10,10,10,10,19,,"HK1003 -Blackpoint D2 - Rev.0E DD30092021"
1-3844,SI-P221-100&,"BD - SUBMISSION - DETAIL DESIGN CONCRETE - PRELIMINARY - 20ULA",5121,"HK1003-Rev.0E-3",TT_Mile,"55902",-,-,-,100,TK_Complete,15/04/2021,15/04/2021,15/04/2021,15/04/2021,"SI-----1-05 FS,SI-P221-365&2 FS","SI-----1-05,SI-P221-365&2","SI-P221-105& FS,SI20ULA2B04 FS","SI-P221-105&,SI20ULA2B04",36,36,36,36,8,8,8,8,8,,"HK1003 -Blackpoint D2 - Rev.0E DD30092021"
1-3845,SI-P221-60&,"BD - SUBMISSION - DETAIL DESIGN CONCRETE - PRELIMINARY - 20UHW",5121,"HK1003-Rev.0E-3",TT_Mile,"55902",-,-,-,100,TK_Complete,15/04/2021,15/04/2021,15/04/2021,15/04/2021,"SI-----1-05 FS,SI-P221-365&2 FS","SI-----1-05,SI-P221-365&2","SI-P221-65& FS,SI20UHW2B04 FS","SI-P221-65&,SI20UHW2B04",36,36,36,36,8,8,8,8,8,,"HK1003 -Blackpoint D2 - Rev.0E DD30092021"
1-3846,SI-P221-70&,"BD - SUBMISSION - DETAIL DESIGN CONCRETE - PRELIMINARY - 20UHA",5121,"HK1003-Rev.0E-3",TT_Mile,"55902",-,-,-,100,TK_Complete,15/04/2021,15/04/2021,15/04/2021,15/04/2021,"SI-----1-05 FS,SI-P221-365&2 FS","SI-----1-05,SI-P221-365&2","SI-P221-75& FS,SI20UHA2B04 FS","SI-P221-75&,SI20UHA2B04",36,36,36,36,8,8,8,8,8,,"HK1003 -Blackpoint D2 - Rev.0E DD30092021"
1-3847,SI-P221-115&,"BD - SUBMISSION - DETAIL DESIGN CONCRETE - PRELIMINARY - 20UVM01",5121,"HK1003-Rev.0E-3",TT_Mile,"55902",-,-,-,100,TK_Complete,15/04/2021,15/04/2021,15/04/2021,15/04/2021,"SI-----1-05 FS,SI-P221-365&2 FS","SI-----1-05,SI-P221-365&2","SI-P221-120& FS,SI20UVM2B04 FS","SI-P221-120&,SI20UVM2B04",36,36,36,36,8,8,8,8,8,,"HK1003 -Blackpoint D2 - Rev.0E DD30092021"
1-3848,SI-P221-305&,"BD - SUBMISSION - DETAIL DESIGN CONCRETE - PRELIMINARY - 20ULY/UMY",5121,"HK1003-Rev.0E-3",TT_Mile,"55902",-,-,-,100,TK_Complete,15/04/2021,15/04/2021,15/04/2021,15/04/2021,"SI-----1-05 FS,SI-P221-365&2 FS","SI-----1-05,SI-P221-365&2","SI-P221-310& FS,SI20UMY2B04 FS","SI-P221-310&,SI20UMY2B04",36,36,36,36,8,8,8,8,8,,"HK1003 -Blackpoint D2 - Rev.0E DD30092021"
1-3849,SI-P221-145&,"BD - SUBMISSION - DETAIL DESIGN CONCRETE - PRELIMINARY - 20UBE/UBF",5121,"HK1003-Rev.0E-3",TT_Mile,"55902",-,-,-,100,TK_Complete,15/04/2021,15/04/2021,15/04/2021,15/04/2021,"SI-----1-05 FS,SI-P221-365&2 FS","SI-----1-05,SI-P221-365&2","SI20UBF2B04 FS","SI20UBF2B04",36,36,36,36,8,8,8,8,8,,"HK1003 -Blackpoint D2 - Rev.0E DD30092021"
1-3850,SI-P221-125&,"BD - SUBMISSION - DETAIL DESIGN CONCRETE - PRELIMINARY - UBA7xxx",5121,"HK1003-Rev.0E-3",TT_Mile,"55902",-,-,-,100,TK_Complete,15/04/2021,15/04/2021,15/04/2021,15/04/2021,"SI-----1-05 FS,SI-P221-365&2 FS","SI-----1-05,SI-P221-365&2","SI-P221-130& FS,SI20UBA2B04 FS","SI-P221-130&,SI20UBA2B04",36,36,36,36,8,8,8,8,8,,"HK1003 -Blackpoint D2 - Rev.0E DD30092021"
1-3851,SI-P221-90&,"BD - SUBMISSION - DETAIL DESIGN CONCRETE - PRELIMINARY - 20UEN",5121,"HK1003-Rev.0E-3",TT_Mile,"55902",-,-,-,100,TK_Complete,15/04/2021,15/04/2021,15/04/2021,15/04/2021,"SI-----1-05 FS,SI-P221-365&2 FS","SI-----1-05,SI-P221-365&2","SI-P221-95& FS,SI20UEN2B04 FS","SI-P221-95&,SI20UEN2B04",36,36,36,36,8,8,8,8,8,,"HK1003 -Blackpoint D2 - Rev.0E DD30092021"
1-3852,SI-P221-170&,"BD - SUBMISSION - DETAIL DESIGN CONCRETE - PRELIMINARY - 20UBX/20UBG03",5121,"HK1003-Rev.0E-3",TT_Mile,"55902",-,-,-,100,TK_Complete,15/04/2021,15/04/2021,15/04/2021,15/04/2021,"SI-----1-05 FS,SI-P221-365&2 FS","SI-----1-05,SI-P221-365&2","SI20UBX2B04 FS","SI20UBX2B04",36,36,36,36,8,8,8,8,8,,"HK1003 -Blackpoint D2 - Rev.0E DD30092021"
1-3853,SI-P221-330&,"BD - SUBMISSION - DETAIL DESIGN CONCRETE FENCES&GATES",5121,"HK1003-Rev.0E-3",TT_Mile,"55902",-,-,-,0,TK_NotStart,10/10/2021,,10/10/2021,,"SI-----1-05 FS","SI-----1-05","SI20UMY4M25 FS,SI20UZJ2-86 FS","SI20UMY4M25,SI20UZJ2-86",62,,62,,14,,14,,33,1400,"HK1003 -Blackpoint D2 - Rev.0E DD30092021"
1-3854,SI-P221-365&,"BD - SUBMISSION - DETAIL DESIGN CONCRETE - CEP/LDK - PIT 20UMC",5121,"HK1003-Rev.0E-3",TT_Mile,"55902",-,-,-,100,TK_Complete,16/03/2021,16/03/2021,16/03/2021,16/03/2021,"SI-----1-05 FS,SI-P221-365&1 FS","SI-----1-05,SI-P221-365&1","SI--UMC2A80 FS","SI--UMC2A80",32,32,32,32,7,7,7,7,6,,"HK1003 -Blackpoint D2 - Rev.0E DD30092021"
1-3855,SI-P221-370&,"BD - SUBMISSION - DETAIL DESIGN CONCRETE SUPERSTRUCTURE 20URA",5121,"HK1003-Rev.0E-3",TT_Mile,"55902",-,-,-,100,TK_Complete,22/09/2021,22/09/2021,22/09/2021,22/09/2021,"SI-----1-05 FS","SI-----1-05","SI--URA2-94 FS","SI--URA2-94",59,59,59,59,13,13,13,13,30,,"HK1003 -Blackpoint D2 - Rev.0E DD30092021"
1-3856,SI-P221-415&,"BD - SUBMISSION - STANDING SEAM ROOF/WALL/PANELS - CLADDING 20UMC",5121,"HK1003-Rev.0E-3",TT_Mile,"55902",-,-,-,100,TK_Complete,14/08/2021,14/08/2021,14/08/2021,14/08/2021,"SI-----1-05 FS","SI-----1-05","SI-P221-420& SS,SI--UMC2B84 FS","SI-P221-420&,SI--UMC2B84",54,54,54,54,12,12,12,12,25,,"HK1003 -Blackpoint D2 - Rev.0E DD30092021"
1-3857,SI-P221-430&,"21 - BD - SUBMISSON HRSG STACK",5121,"HK1003-Rev.0E-3",TT_Mile,"55902",-,-,-,100,TK_Complete,16/05/2021,16/05/2021,16/05/2021,16/05/2021,"SI--HA-2-85 FS,SI--HA-2-101 FS","SI--HA-2-85,SI--HA-2-101","SI--HB-2-16 FS","SI--HB-2-16",41,41,41,41,9,9,9,9,13,,"HK1003 -Blackpoint D2 - Rev.0E DD30092021"
1-3858,SI-P221-380&,"BD - SUBMISSION - RING ROAD INCL. UNDERGROUND (U/G) DRAINAGE RC PLANS",5121,"HK1003-Rev.0E-3",TT_Mile,"55902",-,-,-,100,TK_Complete,10/05/2021,10/05/2021,10/05/2021,10/05/2021,"SI-P221-375& FS,SI-P221-365&5 FS","SI-P221-375&,SI-P221-365&5","SI-UZA2-65 FS","SI-UZA2-65",40,40,40,40,9,9,9,9,12,,"HK1003 -Blackpoint D2 - Rev.0E DD30092021"
1-3859,SI-P221-450&,"BD - SUBMISSION - GEN TRAFO PLATFORM 20UBF",5121,"HK1003-Rev.0E-3",TT_Mile,"55902",-,-,-,100,TK_Complete,15/08/2021,15/08/2021,15/08/2021,15/08/2021,"SI-----1-05 FS","SI-----1-05","SI--UBF2-82 FS","SI--UBF2-82",54,54,54,54,12,12,12,12,26,,"HK1003 -Blackpoint D2 - Rev.0E DD30092021"
1-3860,SI-P221-390&,"BD - REVIEW SUBMISSION- FIRE FIGHTING DESIGN",5121,"HK1003-Rev.0E-3",TT_Mile,"55902",-,-,-,100,TK_Complete,28/05/2021,28/05/2021,28/05/2021,28/05/2021,"SI-----1-05 FS,SI-P221-365&3 FS","SI-----1-05,SI-P221-365&3","SI--SG-2-88 FS","SI--SG-2-88",42,42,42,42,10,10,10,10,14,,"HK1003 -Blackpoint D2 - Rev.0E DD30092021"
1-3861,SI-P221-420&,"BD - SUBMISSION - LOUVRES - CLADDING 20UMC",5121,"HK1003-Rev.0E-3",TT_Mile,"55902",-,-,-,100,TK_Complete,14/08/2021,14/08/2021,14/08/2021,14/08/2021,"SI-P221-415& SS","SI-P221-415&","SI--UMC2B90 FS","SI--UMC2B90",54,54,54,54,12,12,12,12,25,,"HK1003 -Blackpoint D2 - Rev.0E DD30092021"
1-3862,SI-P221-425&,"47 - BD - SUBMISSION -UMX SUPPORTING FRAME FOR DIFFUSER",5121,"HK1003-Rev.0E-3",TT_Mile,"55902",-,-,-,100,TK_Complete,14/07/2021,14/07/2021,14/07/2021,14/07/2021,"SP20MBR2A85 FS","SP20MBR2A85","SI20MBR2B64 FS","SI20MBR2B64",49,49,49,49,11,11,11,11,22,,"HK1003 -Blackpoint D2 - Rev.0E DD30092021"
1-3863,SI-P221-440&,"BD - SUBMISSION  - 20UBH01",5121,"HK1003-Rev.0E-3",TT_Mile,"55902",-,-,-,100,TK_Complete,17/08/2021,17/08/2021,17/08/2021,17/08/2021,"SI-----1-05 FS","SI-----1-05","SI-P221-455& SS,SI20UBH2-94 FS","SI-P221-455&,SI20UBH2-94",54,54,54,54,12,12,12,12,26,,"HK1003 -Blackpoint D2 - Rev.0E DD30092021"
1-3864,SI-P221-395&,"BD - SUBMISSION - SUPPORTING FRAME FOR MODULES LOT 1 (UMY00Y/ULY00Y)",5121,"HK1003-Rev.0E-3",TT_Mile,"55902",-,-,-,100,TK_Complete,17/06/2021,17/06/2021,17/06/2021,17/06/2021,"SI-----1-05 FS,SI-P221-365&3 FS","SI-----1-05,SI-P221-365&3","SI--2M-11 FS","SI--2M-11",45,45,45,45,10,10,10,10,17,,"HK1003 -Blackpoint D2 - Rev.0E DD30092021"
1-3865,SI-P221-375&,"BD - SUBMISSION - RING ROAD INCL. UNDERGROUND (U/G) DRAINAGE",5121,"HK1003-Rev.0E-3",TT_Mile,"55902",-,-,-,100,TK_Complete,10/05/2021,10/05/2021,10/05/2021,10/05/2021,"SI-----1-05 FS,SI-P221-365&3 FS","SI-----1-05,SI-P221-365&3","SI-P221-380& FS,SI-UZA2-60 FS","SI-P221-380&,SI-UZA2-60",40,40,40,40,9,9,9,9,12,,"HK1003 -Blackpoint D2 - Rev.0E DD30092021"
1-3866,SI-P221-385&,"BD - SUBMISSION - HYDRAULIC SUBMISSION APPROVAL (FSI/314 SCHEMATIC DWGS SUBMISSION)",5121,"HK1003-Rev.0E-3",TT_Mile,"55902",-,-,-,100,TK_Complete,31/08/2021,31/08/2021,31/08/2021,31/08/2021,"SI-----1-05 FS","SI-----1-05","SI--SG-2-37 FS","SI--SG-2-37",56,56,56,56,13,13,13,13,27,,"HK1003 -Blackpoint D2 - Rev.0E DD30092021"
1-3867,SI-P221-460&,"63 - BD - SUBMISSION - CIVIL ADAPTION WORKS AT SCW PUMP HOUSE 20UQB",5121,"HK1003-Rev.0E-3",TT_Mile,"55902",-,-,-,0,TK_NotStart,10/10/2021,,10/10/2021,,"SI-----1-05 FS","SI-----1-05","SI20UQZ2-106 FS","SI20UQZ2-106",62,,62,,14,,14,,33,808,"HK1003 -Blackpoint D2 - Rev.0E DD30092021"
1-3868,SI-P221-400&,"BD - SUBMISSION - SUPPORTING FRAME FOR MODULES LOT 2 (UMCM1Y/UMCL1Y)",5121,"HK1003-Rev.0E-3",TT_Mile,"55902",-,-,-,100,TK_Complete,05/07/2021,05/07/2021,05/07/2021,05/07/2021,"SI-----1-05 FS","SI-----1-05","SI--2M-22 FS","SI--2M-22",48,48,48,48,11,11,11,11,20,,"HK1003 -Blackpoint D2 - Rev.0E DD30092021"
1-3869,SI-P221-405&,"BD - SUBMISSION - SUPPORTING FRAME FOR MODULES LOT 3 (UEY01Y/UEY02Y/UPY00Y)",5121,"HK1003-Rev.0E-3",TT_Mile,"55902",-,-,-,100,TK_Complete,03/08/2021,03/08/2021,03/08/2021,03/08/2021,"SI-----1-05 FS","SI-----1-05","SI--2M-23 FS","SI--2M-23",52,52,52,52,12,12,12,12,24,,"HK1003 -Blackpoint D2 - Rev.0E DD30092021"
1-3870,SI-P221-455&,"BD - SUBMISSION  - 20UBH02",5121,"HK1003-Rev.0E-3",TT_Mile,"55902",-,-,-,100,TK_Complete,17/08/2021,17/08/2021,17/08/2021,17/08/2021,"SI-P221-440& SS","SI-P221-440&","SI20UBH2-91 FS","SI20UBH2-91",54,54,54,54,12,12,12,12,26,,"HK1003 -Blackpoint D2 - Rev.0E DD30092021"
1-3871,SI-P221-445&,"BD - SUBMISSION - PUMP PIT DESIGN 20UGU01",5121,"HK1003-Rev.0E-3",TT_Mile,"55902",-,-,-,0,TK_NotStart,10/10/2021,,10/10/2021,,"SI-----1-05 FS","SI-----1-05","SI20UGU2-56 FS","SI20UGU2-56",62,,62,,14,,14,,33,1456,"HK1003 -Blackpoint D2 - Rev.0E DD30092021"
1-3872,SI-P221-465&,"BD - SUBMISSION - STEEL STRUCTURE 20UMC (Incl. Crane Walkawy) (1st SUBMISSION)",5121,"HK1003-Rev.0E-3",TT_Mile,"55902",-,-,-,100,TK_Complete,17/05/2021,17/05/2021,17/05/2021,17/05/2021,"SI-P221-569& FS,SI-P221-572& FS,SI-P221-365&3 FS","SI-P221-569&,SI-P221-572&,SI-P221-365&3","SI--UMC2B79 FS","SI--UMC2B79",41,41,41,41,9,9,9,9,13,,"HK1003 -Blackpoint D2 - Rev.0E DD30092021"
1-3873,SI-P221-470&,"BD - SUBMISSION - STEEL PLATFORMS 20UMC",5121,"HK1003-Rev.0E-3",TT_Mile,"55902",-,-,-,100,TK_Complete,17/06/2021,17/06/2021,17/06/2021,17/06/2021,"SI-----1-05 FS,SI-P221-365&4 FS","SI-----1-05,SI-P221-365&4","SI--UMC2B87 FS","SI--UMC2B87",45,45,45,45,10,10,10,10,17,,"HK1003 -Blackpoint D2 - Rev.0E DD30092021"
1-3874,SI-P221-490&,"BD - SUBMISSION - STEEL STRUCTURE 20UBA7xxx",5121,"HK1003-Rev.0E-3",TT_Mile,"55902",-,-,-,100,TK_Complete,02/08/2021,02/08/2021,02/08/2021,02/08/2021,"","","SI--UBA2-84 FS","SI--UBA2-84",52,52,52,52,12,12,12,12,24,,"HK1003 -Blackpoint D2 - Rev.0E DD30092021"
1-3875,SI-P221-480&,"BD - SUBMISSION - STEEL STRUCTURE 20UBA1110/20",5121,"HK1003-Rev.0E-3",TT_Mile,"55902",-,-,-,0,TK_NotStart,09/12/2021,,09/12/2021,,"SI-----1-05 FS","SI-----1-05","SI20UBA2B-30 FS","SI20UBA2B-30",70,,70,,16,,16,,41,968,"HK1003 -Blackpoint D2 - Rev.0E DD30092021"
1-3876,SI-P221-510&,"45 - BD - SUBMISSION - STEELWORK  - 20UBX/20UBG",5121,"HK1003-Rev.0E-3",TT_Mile,"55902",-,-,-,0,TK_NotStart,31/12/2021,,31/12/2021,,"SI-----1-05 FS","SI-----1-05","SI20UBX2-65 FS","SI20UBX2-65",73,,73,,17,,17,,43,792,"HK1003 -Blackpoint D2 - Rev.0E DD30092021"
1-3877,SI-P221-535&,"BD - SUBMISSION - STEEL STRUCTURE 20UBA8110/20",5121,"HK1003-Rev.0E-3",TT_Mile,"55902",-,-,-,0,TK_NotStart,13/01/2022,,13/01/2022,,"SI-----1-05 FS","SI-----1-05","SI--UBA2-104 FS","SI--UBA2-104",75,,75,,17,,17,,45,1144,"HK1003 -Blackpoint D2 - Rev.0E DD30092021"
1-3878,SI-P221-555&,"BD - SUBMISSION - STEEL STRUCTURE 01UBA9010/20",5121,"HK1003-Rev.0E-3",TT_Mile,"55902",-,-,-,0,TK_NotStart,13/01/2022,,13/01/2022,,"SI-----1-05 FS","SI-----1-05","SI20UBA2C-70 FS","SI20UBA2C-70",75,,75,,17,,17,,45,392,"HK1003 -Blackpoint D2 - Rev.0E DD30092021"
1-3879,SI-P221-530&,"BD - SUBMISSION - STEEL STRUCTURE 20ULY01",5121,"HK1003-Rev.0E-3",TT_Mile,"55902",-,-,-,0,TK_NotStart,10/10/2021,,10/10/2021,,"SI-----1-05 FS","SI-----1-05","SI20ULY2-70 SS","SI20ULY2-70",62,,62,,14,,14,,33,968,"HK1003 -Blackpoint D2 - Rev.0E DD30092021"
1-3880,SI-P221-500&,"44 - BD - SUBMISSION- DETAIL DESIGN STEEL STRUCTURE 20UBE/UBF",5121,"HK1003-Rev.0E-3",TT_Mile,"55902",-,-,-,100,TK_Complete,10/08/2021,10/08/2021,10/08/2021,10/08/2021,"SI-----1-05 FS","SI-----1-05","SI20UBX2-80 FS","SI20UBX2-80",53,53,53,53,12,12,12,12,25,,"HK1003 -Blackpoint D2 - Rev.0E DD30092021"
1-3881,SI-P221-485&,"48 - BD - SUBMISSION - 20UEN PLATFORM",5121,"HK1003-Rev.0E-3",TT_Mile,"55902",-,-,-,0,TK_NotStart,04/11/2021,,04/11/2021,,"SI-----1-05 FS","SI-----1-05","SI20UEN2-8 FS","SI20UEN2-8",65,,65,,15,,15,,37,1912,"HK1003 -Blackpoint D2 - Rev.0E DD30092021"
1-3882,SI-P221-475&,"46 - BD - SUBMISSION - STEEL STRUCTURE 20UHW",5121,"HK1003-Rev.0E-3",TT_Mile,"55902",-,-,-,0,TK_NotStart,10/10/2021,,10/10/2021,,"SI-----1-05 FS","SI-----1-05","SI20UHW3-19 FS","SI20UHW3-19",62,,62,,14,,14,,33,1664,"HK1003 -Blackpoint D2 - Rev.0E DD30092021"
1-3883,SI-P221-545&,"BD - SUBMISSION - STEEL STRUCTURE 20URD",5121,"HK1003-Rev.0E-3",TT_Mile,"55902",-,-,-,0,TK_NotStart,15/10/2021,,15/10/2021,,"SI-----1-05 FS","SI-----1-05","SI20URD3-19 FS","SI20URD3-19",62,,62,,14,,14,,34,1920,"HK1003 -Blackpoint D2 - Rev.0E DD30092021"
1-3884,SI-P221-495&,"BD - SUBMISSION - STEEL STRUCTURE 20UBA7910/20",5121,"HK1003-Rev.0E-3",TT_Mile,"55902",-,-,-,0,TK_NotStart,09/12/2021,,09/12/2021,,"SI-----1-05 FS","SI-----1-05","SI--UBA2-106 FS","SI--UBA2-106",70,,70,,16,,16,,41,968,"HK1003 -Blackpoint D2 - Rev.0E DD30092021"
1-3885,SI-P221-540&,"BD - SUBMISSION - DETAIL DESIGN STEEL 20UBD03/04",5121,"HK1003-Rev.0E-3",TT_Mile,"55902",-,-,-,0,TK_NotStart,02/12/2021,,02/12/2021,,"SI-----1-05 FS,SI-P221-365&7 FS","SI-----1-05,SI-P221-365&7","SI20UBD2C-84 FS","SI20UBD2C-84",69,,69,,16,,16,,40,1456,"HK1003 -Blackpoint D2 - Rev.0E DD30092021"
1-3886,SI-P221-505&,"BD - SUBMISSION - DETAIL DESIGN STEEL 20UBD01/02",5121,"HK1003-Rev.0E-3",TT_Mile,"55902",-,-,-,0,TK_NotStart,09/12/2021,,09/12/2021,,"SI-----1-05 FS","SI-----1-05","SI20UBD2C-90 FS","SI20UBD2C-90",70,,70,,16,,16,,41,1112,"HK1003 -Blackpoint D2 - Rev.0E DD30092021"
1-3887,SI-P221-515&,"BD - SUBMISSION - STEEL STRUCTURE 20UBN",5121,"HK1003-Rev.0E-3",TT_Mile,"55902",-,-,-,0,TK_NotStart,23/03/2022,,23/03/2022,,"SI-----1-05 FS,SI-P221-365&8 FS","SI-----1-05,SI-P221-365&8","SI20UBN2-104 FS","SI20UBN2-104",85,,85,,19,,19,,53,2008,"HK1003 -Blackpoint D2 - Rev.0E DD30092021"
1-3888,SI-P221-550&,"BD - SUBMISSION - STEEL STRUCTURE 20UMX02",5121,"HK1003-Rev.0E-3",TT_Mile,"55902",-,-,-,0,TK_NotStart,09/12/2021,,09/12/2021,,"SI-----1-05 FS","SI-----1-05","SI20UMX2-104 FS","SI20UMX2-104",70,,70,,16,,16,,41,1160,"HK1003 -Blackpoint D2 - Rev.0E DD30092021"
1-3889,SI-P221-520&,"BD - SUBMISSION - STEEL STRUCTURE 20UEX01",5121,"HK1003-Rev.0E-3",TT_Mile,"55902",-,-,-,0,TK_NotStart,23/03/2022,,23/03/2022,,"SI-----1-05 FS","SI-----1-05","SI20UEX2-104 FS","SI20UEX2-104",85,,85,,19,,19,,53,552,"HK1003 -Blackpoint D2 - Rev.0E DD30092021"
1-3890,SI-P221-560&,"BD - SUBMISSION - STEEL STRUCTURE 20URA",5121,"HK1003-Rev.0E-3",TT_Mile,"55902",-,-,-,0,TK_NotStart,10/10/2021,,10/10/2021,,"SI-----1-05 FS","SI-----1-05","SI20URA3-19 FS","SI20URA3-19",62,,62,,14,,14,,33,2256,"HK1003 -Blackpoint D2 - Rev.0E DD30092021"
1-3891,SP20MPB3A94,"MANUFACTURING ENCLOSURE 20MPB",5121,"HK1003-Rev.0E-3",TT_Task,"55902",-,-,-,0,TK_NotStart,02/12/2021,,01/04/2022,,"SP20MPB3A92 FS,SI--2222-30 FS,SP20MB-3-25 FF","SP20MPB3A92,SI--2222-30,SP20MB-3-25","SP20MPB3-83 FS","SP20MPB3-83",69,,86,,16,,20,,40,504,"HK1003 -Blackpoint D2 - Rev.0E DD30092021"
1-3892,SI20MPB6E83,"ERECTION OF STEELWORK FOR ENCLOSURE 20MPB",5121,"HK1003-Rev.0E-3",TT_Task,"55902",-,-,-,0,TK_NotStart,10/09/2022,,23/09/2022,,"SI20MBA6-35 FS","SI20MBA6-35","SI20MPB6E82 FS,SI20BZL7F16 FS","SI20MPB6E82,SI20BZL7F16",110,,111,,25,,26,,80,224,"HK1003 -Blackpoint D2 - Rev.0E DD30092021"
1-3893,SI20UBX2C-65,"DETAIL DESIGN CLADDING 20UBX",5121,"HK1003-Rev.0E-3",TT_Task,"55902",-,-,-,0,TK_NotStart,13/05/2022,,07/07/2022,,"SI20UBX2C-50 FS","SI20UBX2C-50","SI20UBX2C-55 FS","SI20UBX2C-55",92,,100,,21,,23,,64,520,"HK1003 -Blackpoint D2 - Rev.0E DD30092021"
1-3894,SP20MBL2-99&,"27 - BD - SUBMISSION - AIR INTAKE INTERNAL PORTION",5121,"HK1003-Rev.0E-3",TT_Mile,"55902",-,-,-,100,TK_Complete,16/08/2021,16/08/2021,16/08/2021,16/08/2021,"SI-----1-05 FS","SI-----1-05","SP20MBL2-96 FS","SP20MBL2-96",54,54,54,54,12,12,12,12,26,,"HK1003 -Blackpoint D2 - Rev.0E DD30092021"
1-3895,SI-P221-561&,"22 - BD - SUBMISSON HRSG MAIN FRAME",5121,"HK1003-Rev.0E-3",TT_Mile,"55902",-,-,-,100,TK_Complete,16/05/2021,16/05/2021,16/05/2021,16/05/2021,"SI--HA-2-85 FS,SI--HA-2-101 FS","SI--HA-2-85,SI--HA-2-101","SI--HB-2-16 FS","SI--HB-2-16",41,41,41,41,9,9,9,9,13,,"HK1003 -Blackpoint D2 - Rev.0E DD30092021"
1-3896,SI-P221-562&,"23 - BD - SUBMISSON HRSG LOWER PLATFORM",5121,"HK1003-Rev.0E-3",TT_Mile,"55902",-,-,-,100,TK_Complete,16/07/2021,16/07/2021,16/07/2021,16/07/2021,"SI--HA-2-85 FS,SI--HA-2-102 FS","SI--HA-2-85,SI--HA-2-102","SI--HB-2-18 FS","SI--HB-2-18",49,49,49,49,11,11,11,11,22,,"HK1003 -Blackpoint D2 - Rev.0E DD30092021"
1-3897,SI-P221-563&,"24 - BD - SUBMISSON HRSG MAINTENANCE STAIRCASE",5121,"HK1003-Rev.0E-3",TT_Mile,"55902",-,-,-,100,TK_Complete,16/07/2021,16/07/2021,16/07/2021,16/07/2021,"SI--HA-2-85 FS,SI--HA-2-102 FS","SI--HA-2-85,SI--HA-2-102","SI--HB-2-18 FS","SI--HB-2-18",49,49,49,49,11,11,11,11,22,,"HK1003 -Blackpoint D2 - Rev.0E DD30092021"
1-3898,SI-P221-564&,"25 - BD - SUBMISSON HRSG SIDE PLATFORM",5121,"HK1003-Rev.0E-3",TT_Mile,"55902",-,-,-,100,TK_Complete,16/07/2021,16/07/2021,16/07/2021,16/07/2021,"SI--HA-2-85 FS,SI--HA-2-102 FS","SI--HA-2-85,SI--HA-2-102","SI--HB-2-18 FS","SI--HB-2-18",49,49,49,49,11,11,11,11,22,,"HK1003 -Blackpoint D2 - Rev.0E DD30092021"
1-3899,SI-P221-565&,"26 - BD - SUBMISSON HRSG ROOF CANOPY",5121,"HK1003-Rev.0E-3",TT_Mile,"55902",-,-,-,100,TK_Complete,16/07/2021,16/07/2021,16/07/2021,16/07/2021,"SI--HA-2-85 FS,SI--HA-2-102 FS","SI--HA-2-85,SI--HA-2-102","SI--HB-2-18 FS","SI--HB-2-18",49,49,49,49,11,11,11,11,22,,"HK1003 -Blackpoint D2 - Rev.0E DD30092021"
1-3900,SP20MBL2-100&,"28 - BD - SUBMISSION - AIR INTAKE EXTERNAL PORTION",5121,"HK1003-Rev.0E-3",TT_Mile,"55902",-,-,-,100,TK_Complete,16/08/2021,16/08/2021,16/08/2021,16/08/2021,"SP--MB-2-85 FS","SP--MB-2-85","SI-----1-09 FS,SP20MBL2-96 FS","SI-----1-09,SP20MBL2-96",54,54,54,54,12,12,12,12,26,,"HK1003 -Blackpoint D2 - Rev.0E DD30092021"
1-3901,SI-P221-566&,"29 - BD - SUBMISSION - DECOMPOSITION CHAMBER SUPPORTING FRAME",5121,"HK1003-Rev.0E-3",TT_Mile,"55902",-,-,-,100,TK_Complete,08/07/2021,08/07/2021,08/07/2021,08/07/2021,"SI20HSJ3-84 SS","SI20HSJ3-84","SI20HSJ3-81 FS","SI20HSJ3-81",48,48,48,48,11,11,11,11,21,,"HK1003 -Blackpoint D2 - Rev.0E DD30092021"
1-3902,SI-P221-567&,"30 - BD - SUBMISSION - HOT AIR BLOWER SUPPORTING FRAME",5121,"HK1003-Rev.0E-3",TT_Mile,"55902",-,-,-,100,TK_Complete,08/07/2021,08/07/2021,08/07/2021,08/07/2021,"SI20HSJ3-84 SS","SI20HSJ3-84","SI20HSJ3-81 FS","SI20HSJ3-81",48,48,48,48,11,11,11,11,21,,"HK1003 -Blackpoint D2 - Rev.0E DD30092021"
1-3903,SI-P221-568&,"49 - BD - SUBMISSION - CLEAN/DIRTY OIL TANK UMX",5121,"HK1003-Rev.0E-3",TT_Mile,"55902",-,-,-,0,TK_NotStart,15/10/2021,,15/10/2021,,"SI-----1-05 FS","SI-----1-05","SI-----1-09 FS,SI20MBV3-83 FS","SI-----1-09,SI20MBV3-83",62,,62,,14,,14,,34,872,"HK1003 -Blackpoint D2 - Rev.0E DD30092021"
1-3904,SI-P221-569&,"36 - BD - SUBMISSION - CRANE WALKWAY PLATFORM 20UMC",5121,"HK1003-Rev.0E-3",TT_Mile,"55902",-,-,-,100,TK_Complete,17/05/2021,17/05/2021,17/05/2021,17/05/2021,"SI-----1-05 FS","SI-----1-05","SI-P221-465& FS,SI--UMC2B87 FS","SI-P221-465&,SI--UMC2B87",41,41,41,41,9,9,9,9,13,,"HK1003 -Blackpoint D2 - Rev.0E DD30092021"
1-3905,SI-P221-570&,"34 - BD - SUBMISSION - CEP PLATFORM 20UMC",5121,"HK1003-Rev.0E-3",TT_Mile,"55902",-,-,-,100,TK_Complete,17/06/2021,17/06/2021,17/06/2021,17/06/2021,"SI-----1-05 FS","SI-----1-05","SI-----1-09 FS,SI--UMC2B87 FS","SI-----1-09,SI--UMC2B87",45,45,45,45,10,10,10,10,17,,"HK1003 -Blackpoint D2 - Rev.0E DD30092021"
1-3906,SI-P221-571&,"35 - BD - SUBMISSION - LDK PLATFORM 20UMC",5121,"HK1003-Rev.0E-3",TT_Mile,"55902",-,-,-,100,TK_Complete,17/06/2021,17/06/2021,17/06/2021,17/06/2021,"SI-----1-05 FS","SI-----1-05","SI-----1-09 FS,SI--UMC2B87 FS","SI-----1-09,SI--UMC2B87",45,45,45,45,10,10,10,10,17,,"HK1003 -Blackpoint D2 - Rev.0E DD30092021"
1-3907,SI-P221-572&,"37 - BD - SUBMISSION - ENTRANCE PLATFORM 20UMC",5121,"HK1003-Rev.0E-3",TT_Mile,"55902",-,-,-,100,TK_Complete,17/05/2021,17/05/2021,17/05/2021,17/05/2021,"SI-----1-05 FS","SI-----1-05","SI-----1-09 FS,SI--UMC2B87 FS,SI-P221-465& FS","SI-----1-09,SI--UMC2B87,SI-P221-465&",41,41,41,41,9,9,9,9,13,,"HK1003 -Blackpoint D2 - Rev.0E DD30092021"
1-3908,SI-P221-573&,"38 - BD - SUBMISSION - GENO ST PLATFORM 20UMC",5121,"HK1003-Rev.0E-3",TT_Mile,"55902",-,-,-,100,TK_Complete,18/08/2021,18/08/2021,18/08/2021,18/08/2021,"SI-----1-05 FS","SI-----1-05","SI-----1-09 FS,SI--UMC2B96 FS","SI-----1-09,SI--UMC2B96",54,54,54,54,12,12,12,12,26,,"HK1003 -Blackpoint D2 - Rev.0E DD30092021"
1-3909,SI-P221-574&,"39 - BD - SUBMISSION - BUS DUCT SUPPORT STRUCTURE 20UBL",5121,"HK1003-Rev.0E-3",TT_Mile,"55902",-,-,-,0,TK_NotStart,14/12/2021,,14/12/2021,,"SI-----1-05 FS","SI-----1-05","SI20UBL2C-70 FS","SI20UBL2C-70",71,,71,,16,,16,,42,600,"HK1003 -Blackpoint D2 - Rev.0E DD30092021"
1-3910,SI-P221-575&,"40 - BD - SUBMISSION - CONDENSER MANHOLE ACCESS PLATFORM",5121,"HK1003-Rev.0E-3",TT_Mile,"55902",-,-,-,100,TK_Complete,18/08/2021,18/08/2021,18/08/2021,18/08/2021,"SI-----1-05 FS","SI-----1-05","SI-----1-09 FS,SI--UMC2B96 FS,SI--UMC2B96 SS","SI-----1-09,SI--UMC2B96,SI--UMC2B96",54,54,54,54,12,12,12,12,26,,"HK1003 -Blackpoint D2 - Rev.0E DD30092021"
1-3911,SI-P221-576&,"41 - BD - SUBMISSION - ST BEARING ACESS PLATFORM",5121,"HK1003-Rev.0E-3",TT_Mile,"55902",-,-,-,100,TK_Complete,18/08/2021,18/08/2021,18/08/2021,18/08/2021,"SI-----1-05 FS","SI-----1-05","SI-----1-09 FS,SI--UMC2B96 FS,SI--UMC2B96 SS","SI-----1-09,SI--UMC2B96,SI--UMC2B96",54,54,54,54,12,12,12,12,26,,"HK1003 -Blackpoint D2 - Rev.0E DD30092021"
1-3912,SI-P221-578&,"43 - BD - SUBMISSION - MISCELLANEOUS PLATFORMS (INSIDE BUILDING) 20UMC",5121,"HK1003-Rev.0E-3",TT_Mile,"55902",-,-,-,100,TK_Complete,18/08/2021,18/08/2021,18/08/2021,18/08/2021,"SI-----1-05 FS","SI-----1-05","SI-----1-09 FS,SI--UMC2B96 FS","SI-----1-09,SI--UMC2B96",54,54,54,54,12,12,12,12,26,,"HK1003 -Blackpoint D2 - Rev.0E DD30092021"
1-3913,SI-P221-579&,"14 - BD - SUBMISSON EXTERNAL STEELWORK & CANOPIES FOR UTG",5121,"HK1003-Rev.0E-3",TT_Mile,"55902",-,-,-,0,TK_NotStart,08/11/2021,,08/11/2021,,"SI-----1-05 FS","SI-----1-05","SI20UTG2S-10 FS,SI20UTG2S-12 FS,SI20UTG2S-126 FS,SI20UTG2S-46 FS,SI20UTG2S-66 FS,SI20UTG2S-86 FS,SI20UTG2S-106 FS","SI20UTG2S-10,SI20UTG2S-12,SI20UTG2S-126,SI20UTG2S-46,SI20UTG2S-66,SI20UTG2S-86,SI20UTG2S-106",66,,66,,15,,15,,37,2272,"HK1003 -Blackpoint D2 - Rev.0E DD30092021"
1-3914,SI-PM-10,"PM01 - NOTICE TO PROCEED RECEIVED",5121,"HK1003-Rev.0E-3",TT_Mile,"55902",-,-,-,100,TK_Complete,15/01/2021,15/01/2021,15/01/2021,15/01/2021,"SI-----1-05 FS","SI-----1-05","SI-PM-15 FS","SI-PM-15",23,23,23,23,5,5,5,5,2,,"HK1003 -Blackpoint D2 - Rev.0E DD30092021"
1-3915,SI-PM-15,"PM02 - SITE TAKEOVER ACHIEVED",5121,"HK1003-Rev.0E-3",TT_Mile,"55902",-,-,-,100,TK_Complete,01/07/2021,01/07/2021,01/07/2021,01/07/2021,"SI-----5-20 FS,SI-PM-10 FS","SI-----5-20,SI-PM-10","SI-PM-20 FS","SI-PM-20",47,47,47,47,11,11,11,11,20,,"HK1003 -Blackpoint D2 - Rev.0E DD30092021"
1-3916,SI-PM-20,"PM03 - GT FOUNDATION COMPLETED",5121,"HK1003-Rev.0E-3",TT_Mile,"55902",-,-,-,0,TK_NotStart,29/11/2021,,29/11/2021,,"SI20UMC5A45 FS,SI-PM-15 FS","SI20UMC5A45,SI-PM-15","SI-PM-25 FS","SI-PM-25",69,,69,,16,,16,,40,3496,"HK1003 -Blackpoint D2 - Rev.0E DD30092021"
1-3917,SI-PM-25,"PM04 - COMPLETION OF GT FACTORY ACCEPTANCE TESTING",5121,"HK1003-Rev.0E-3",TT_Mile,"55902",-,-,-,0,TK_NotStart,01/04/2022,,01/04/2022,,"SP20MB-3-25 FS,SI-PM-20 FS","SP20MB-3-25,SI-PM-20","SI-PM-30 FS","SI-PM-30",86,,86,,20,,20,,55,2512,"HK1003 -Blackpoint D2 - Rev.0E DD30092021"
1-3918,SI-PM-30,"PM05 - GAS TURBINE SET ON FOUNDATION",5121,"HK1003-Rev.0E-3",TT_Mile,"55902",-,-,-,0,TK_NotStart,06/08/2022,,06/08/2022,,"SI20MB-6-10 FS,SI-PM-25 FS","SI20MB-6-10,SI-PM-25","SI-PM-40 FS","SI-PM-40",105,,105,,24,,24,,77,1496,"HK1003 -Blackpoint D2 - Rev.0E DD30092021"
1-3919,SI-PM-35,"PM06 - STEAM TURBINE SET ON FOUNDATION",5121,"HK1003-Rev.0E-3",TT_Mile,"55902",-,-,-,0,TK_NotStart,04/08/2022,,04/08/2022,,"SI20MA-6A10 FS","SI20MA-6A10","SI-PM-40 FS","SI-PM-40",104,,104,,24,,24,,76,1512,"HK1003 -Blackpoint D2 - Rev.0E DD30092021"
1-3920,SI-PM-40,"PM07 - MOBILISATION OF COMMISSIONING",5121,"HK1003-Rev.0E-3",TT_Mile,"55902",-,-,-,0,TK_NotStart,07/02/2023,,07/02/2023,,"SI-PM-35 FS,SI-PM-30 FS,SI20BFA8-36 FS","SI-PM-35,SI-PM-30,SI20BFA8-36","SI-PM-45 FS,SI20L--8-35 FS,SI20MBH8-25 FS,SI20M--8-68 FS,SI20MAX8-25 FS,SI20MAW8-25 FS,SI20MAJ8-25 FS,SI20MAL8-25 FS,SI20QFB8-25 FS,SI20MAN8-25 FS,SI20MAD8-25 FS,SI20SGC8-28 FS,SI20SGC8-30 FS,SI20SGC8-26 FS,SI20SGC8-25 FS,SI20SGC8-27 FS,SI20SGC8-33 FS,SI20SGC8-34 FS,SI20SGC8-31 FS,SI20SGC8-32 FS,SI20M--8-66 FS,SI20M--8-25 FS,SI20CJT8-20 FS,SI20GHD8A25 FS,SI20CJT8A20 FS,SI20HSJ8-26 FS,SI20LBB8H25 FS,SI20GM-8B25 FS,SI20GM-8E25 FS,SI20GM-8B27 FS,SI20MBV8H25 FS,SI20LCA8M25 FS,SI20MAV8-25 FS,SI20MA-8-25 FS,SI20LBA8J25 FS,SI20SGA8-26 FS,SI20S--8-25 FS,SI20SAM8-26 FS,SI20HAD8G25 FS,SI20HAD8F25 FS,SI20HAD8E25 FS,SI20HAA8F26 FS,SI20MA-8B25 FS,SI20LBA8H25 FS,SI20MB-8E25 FS,SI20MBX8-25 FS,SI20MBA8-25 FS,SI20MBA8E25 FS,SI20MBX8E25 FS,SI20MB-8-25 FS,SI20MKA8-25 FS,SI20MKW8H25 FS,SI20CYQ8-25 FS,SI20MBV8-155 FS,SI20EK-8-99 FS,SI20EK-8-25 FS,SI20SCA8-17 FS,SI20--P6-78 FS,SI20--P6-76 FS,SI20SGA8B27 FS,SI20SGY8A26 FS,SI20SGC8-37 FS,SI20SGM8-42 FS,SI20SGM8-32 FS,SI20SGM8-33 FS,SI20SGM8-40 FS,SI20SGM8-25 FS,SI20SGJ8-30 FS,SI20SGJ8-21 FS,SI20LAC8B25 FS,SI20MBR8-27 FS,SI20GKB8H25 FS,SI20QCB8-25 FS,SI20QC-8-25 FS,SI20HA-8-25 FS,SI20PAB8-25 FS,SI20PAA8-20 FS,SI20MAG8-25 FS,SI20LDK8B25 FS,SI20PGB8B25 FS,SI20HB-8-25 FS,SI20LCL8B25 FS,SI20LBH8D25 FS,SI20LBG8A25 FS,SI20MBL8-25 FS,SI20PCB8M25 FS,SI20CHA8-25 FS,SI20CH-8-25 FS,SI20CYA8-30 FS,SI--CYA8-25 FS,SI20B--8-51 FS,SI20UBH8-27 FS,SI20BBA8-25 FS,SI20BBA8-36 FS,SI20BAT8-25 FS,SI20BFT8-76 FS,SI20BFT8-25 FS,SI--BFT8-25 FS,SI20BFC8-25 FS,SI20BFA8-25 FS,SI20BZL8B27 FS,SI20BZL8B25 FS,SI20BZL8A27 FS,SI20BZL8E25 FS,SI20BZL8-25 FS,SI20BZL8B26 FS,SI20ACA9-85 FS,SI20CPB8-25 FS,SI20CPC8-25 FS,SI20CPA8-25 FS,SI20CPC8-27 FS,SI20CPD8-36 FS,SI20XKA8-25 FS,SI20CH-8A25 FS,SI20BU-8-25 FS,SI20PAD8-55 FS,SI20CR-8-25 FS,SI20CFE8-35 FS,SI20CFE8-36 FS,SI20BAC8-26 FS,SI20BBT8-25 FS,SI20CJ-8-25 FS,SI--BRU8-21 FS,SI20GHC8H16 FS,SI20M--9-70 FS,SI20MB-9-15 FS,SI20MKA9-35 FS","SI-PM-45,SI20L--8-35,SI20MBH8-25,SI20M--8-68,SI20MAX8-25,SI20MAW8-25,SI20MAJ8-25,SI20MAL8-25,SI20QFB8-25,SI20MAN8-25,SI20MAD8-25,SI20SGC8-28,SI20SGC8-30,SI20SGC8-26,SI20SGC8-25,SI20SGC8-27,SI20SGC8-33,SI20SGC8-34,SI20SGC8-31,SI20SGC8-32,SI20M--8-66,SI20M--8-25,SI20CJT8-20,SI20GHD8A25,SI20CJT8A20,SI20HSJ8-26,SI20LBB8H25,SI20GM-8B25,SI20GM-8E25,SI20GM-8B27,SI20MBV8H25,SI20LCA8M25,SI20MAV8-25,SI20MA-8-25,SI20LBA8J25,SI20SGA8-26,SI20S--8-25,SI20SAM8-26,SI20HAD8G25,SI20HAD8F25,SI20HAD8E25,SI20HAA8F26,SI20MA-8B25,SI20LBA8H25,SI20MB-8E25,SI20MBX8-25,SI20MBA8-25,SI20MBA8E25,SI20MBX8E25,SI20MB-8-25,SI20MKA8-25,SI20MKW8H25,SI20CYQ8-25,SI20MBV8-155,SI20EK-8-99,SI20EK-8-25,SI20SCA8-17,SI20--P6-78,SI20--P6-76,SI20SGA8B27,SI20SGY8A26,SI20SGC8-37,SI20SGM8-42,SI20SGM8-32,SI20SGM8-33,SI20SGM8-40,SI20SGM8-25,SI20SGJ8-30,SI20SGJ8-21,SI20LAC8B25,SI20MBR8-27,SI20GKB8H25,SI20QCB8-25,SI20QC-8-25,SI20HA-8-25,SI20PAB8-25,SI20PAA8-20,SI20MAG8-25,SI20LDK8B25,SI20PGB8B25,SI20HB-8-25,SI20LCL8B25,SI20LBH8D25,SI20LBG8A25,SI20MBL8-25,SI20PCB8M25,SI20CHA8-25,SI20CH-8-25,SI20CYA8-30,SI--CYA8-25,SI20B--8-51,SI20UBH8-27,SI20BBA8-25,SI20BBA8-36,SI20BAT8-25,SI20BFT8-76,SI20BFT8-25,SI--BFT8-25,SI20BFC8-25,SI20BFA8-25,SI20BZL8B27,SI20BZL8B25,SI20BZL8A27,SI20BZL8E25,SI20BZL8-25,SI20BZL8B26,SI20ACA9-85,SI20CPB8-25,SI20CPC8-25,SI20CPA8-25,SI20CPC8-27,SI20CPD8-36,SI20XKA8-25,SI20CH-8A25,SI20BU-8-25,SI20PAD8-55,SI20CR-8-25,SI20CFE8-35,SI20CFE8-36,SI20BAC8-26,SI20BBT8-25,SI20CJ-8-25,SI--BRU8-21,SI20GHC8H16,SI20M--9-70,SI20MB-9-15,SI20MKA9-35",131,,131,,30,,30,,89,16,"HK1003 -Blackpoint D2 - Rev.0E DD30092021"
1-3921,SI-PM-45,"PM08 - FIRST FIRE ACHIEVED",5121,"HK1003-Rev.0E-3",TT_Mile,"55902",-,-,-,0,TK_NotStart,01/07/2023,,01/07/2023,,"SI20MB-9-15 FS,SI-PM-40 FS","SI20MB-9-15,SI-PM-40","SI-PM-50 FS","SI-PM-50",152,,152,,35,,35,,99,7312,"HK1003 -Blackpoint D2 - Rev.0E DD30092021"
1-3922,SI-PM-50,"PM09 - SUBSTANTIAL COMPLETION ACHIEVED - PAC",5121,"HK1003-Rev.0E-3",TT_Mile,"55902",-,-,-,0,TK_NotStart,31/12/2023,,31/12/2023,,"SI-----1-09 FS,SI-PM-45 FS","SI-----1-09,SI-PM-45","SI-PM-55 FS","SI-PM-55",178,,178,,41,,41,,99,5848,"HK1003 -Blackpoint D2 - Rev.0E DD30092021"
1-3923,SI-PM-55,"PM10 - FINAL COMPLETION ACHIEVED - FAC",5121,"HK1003-Rev.0E-3",TT_Mile,"55902",-,-,-,0,TK_NotStart,31/12/2025,,31/12/2025,,"SI-----1-09 FS,SI-PM-50 FS","SI-----1-09,SI-PM-50","","",282,,282,,65,,65,,99,0,"HK1003 -Blackpoint D2 - Rev.0E DD30092021"
1-3924,SI20UTG2S-30,"(HS) START ERECTION STEEL STRUCTURE 20UTG01",5121,"HK1003-Rev.0E-3",TT_Mile,"55902",-,-,-,0,TK_NotStart,16/05/2022,,16/05/2022,,"SI20UTG2S-24 FS,SI20UTG5-16 FS","SI20UTG2S-24,SI20UTG5-16","SI20UTG2S-32 FS","SI20UTG2S-32",93,,93,,21,,21,,65,2600,"HK1003 -Blackpoint D2 - Rev.0E DD30092021"
1-3925,SI20UTG2S-38,"(RFE) STEEL STRUCTURE 20UTG01",5121,"HK1003-Rev.0E-3",TT_FinMile,"55902",-,-,-,0,TK_NotStart,29/05/2022,,29/05/2022,,"SI20UTG2S-32 FS","SI20UTG2S-32","SI20QJ-6B42 FS,SI-P222-78 FS","SI20QJ-6B42,SI-P222-78",95,,95,,22,,22,,67,2600,"HK1003 -Blackpoint D2 - Rev.0E DD30092021"
1-3926,SI20UTG2S-32,"ERECTION STEELWORKS & CANOPIES 20UTG01",5121,"HK1003-Rev.0E-3",TT_Task,"55902",-,-,-,0,TK_NotStart,16/05/2022,,29/05/2022,,"SI20UTG2S-30 FS","SI20UTG2S-30","SI20UTG2S-38 FS","SI20UTG2S-38",93,,95,,21,,22,,65,2600,"HK1003 -Blackpoint D2 - Rev.0E DD30092021"
1-3927,SI20UTG2S-18,"HANDRAILS AND GRATING DWGS & CONNECTION FORCE REPORT 20UTG01",5121,"HK1003-Rev.0E-3",TT_Task,"55902",-,-,-,0,TK_NotStart,19/10/2021,,08/11/2021,,"SI20UTG2S-6 FF","SI20UTG2S-6","SI20UTG2S-22 FS","SI20UTG2S-22",63,,66,,14,,15,,35,3320,"HK1003 -Blackpoint D2 - Rev.0E DD30092021"
1-3928,SI20UTG2S-22,"(F) DETAIL DESIGN STEEL STRUCTURE WITH CONTRACTOR 20UTG01",5121,"HK1003-Rev.0E-3",TT_Mile,"55902",-,-,-,0,TK_NotStart,05/02/2022,,05/02/2022,,"SI20UTG2S-18 FS,SI20UTG2S-6 FS,SI20UTG2S-10 FS","SI20UTG2S-18,SI20UTG2S-6,SI20UTG2S-10","SI20UTG2S-24 FS","SI20UTG2S-24",79,,79,,18,,18,,48,2616,"HK1003 -Blackpoint D2 - Rev.0E DD30092021"
1-3929,SI20UTG2S-6,"DETAIL DESIGN STEEL STRUCTURE 20UTG01",5121,"HK1003-Rev.0E-3",TT_Task,"55902",-,-,-,18,TK_Active,21/09/2021,21/09/2021,08/11/2021,,"SI20UTG2S-2 FS","SI20UTG2S-2","SI20UTG2S-22 FS,SI20UTG2S-18 FF,SI20UTG2S-10 FS","SI20UTG2S-22,SI20UTG2S-18,SI20UTG2S-10",59,59,66,,13,13,15,,30,2616,"HK1003 -Blackpoint D2 - Rev.0E DD30092021"
1-3930,SI20UTG2S-2,"(MS3) STEEL STRUCTURE FINAL DIMENSIONS, LOADS AVAILABLE 20UTG01",5121,"HK1003-Rev.0E-3",TT_FinMile,"55902",-,-,-,100,TK_Complete,20/09/2021,20/09/2021,20/09/2021,20/09/2021,"SI20UTG2-5 FS","SI20UTG2-5","SI20UTG2S-6 FS","SI20UTG2S-6",59,59,59,59,13,13,13,13,29,,"HK1003 -Blackpoint D2 - Rev.0E DD30092021"
1-3931,SI20UTG2S-24,"FABRICATION DESIGN/FABRICATION/TRANSPORT STEEL STRUC.20UTG01",5121,"HK1003-Rev.0E-3",TT_Task,"55902",-,-,-,0,TK_NotStart,05/02/2022,,13/05/2022,,"SI20UTG2S-22 FS,SI20UTG2S-14 FS","SI20UTG2S-22,SI20UTG2S-14","SI20UTG2S-30 FS","SI20UTG2S-30",79,,92,,18,,21,,48,2616,"HK1003 -Blackpoint D2 - Rev.0E DD30092021"
1-3932,SI20UTG2S-10,"BD - SUBMISSION & APPROVAL - STEEL STRUCTURE 20UTG01",5121,"HK1003-Rev.0E-3",TT_Task,"55902",-,-,-,0,TK_NotStart,09/11/2021,,07/01/2022,,"SI20UTG2S-6 FS,SI-P221-579& FS,SI20UTG2-30 SS","SI20UTG2S-6,SI-P221-579&,SI20UTG2-30","SI20UTG2S-14 FS,SI20UTG2S-22 FS","SI20UTG2S-14,SI20UTG2S-22",66,,74,,15,,17,,37,2616,"HK1003 -Blackpoint D2 - Rev.0E DD30092021"
1-3933,SI20UTG2S-14,"BD - CONSENT LETTER - STEEL STRUCTURE 20UTG01",5121,"HK1003-Rev.0E-3",TT_Task,"55902",-,-,-,0,TK_NotStart,08/01/2022,,04/02/2022,,"SI20UTG2S-10 FS","SI20UTG2S-10","SI20UTG2S-24 FS","SI20UTG2S-24",75,,78,,17,,18,,44,2616,"HK1003 -Blackpoint D2 - Rev.0E DD30092021"
1-3934,SI20UTG2S-34,"(HS) START ERECTION STEEL STRUCTURE 20UTG07",5121,"HK1003-Rev.0E-3",TT_Mile,"55902",-,-,-,0,TK_NotStart,13/06/2022,,13/06/2022,,"SI20UTG2S-28 FS,SI20UTG5-76 FS","SI20UTG2S-28,SI20UTG5-76","SI20UTG2S-36 FS","SI20UTG2S-36",97,,97,,22,,22,,69,2024,"HK1003 -Blackpoint D2 - Rev.0E DD30092021"
1-3935,SI20UTG2S-40,"(RFE) STEEL STRUCTURE 20UTG07",5121,"HK1003-Rev.0E-3",TT_FinMile,"55902",-,-,-,0,TK_NotStart,26/06/2022,,26/06/2022,,"SI20UTG2S-36 FS","SI20UTG2S-36","SI20QJ-6B45 FS,SI-P222-78 FS","SI20QJ-6B45,SI-P222-78",99,,99,,23,,23,,71,2024,"HK1003 -Blackpoint D2 - Rev.0E DD30092021"
1-3936,SI20UTG2S-36,"ERECTION STEELWORKS & CANOPIES 20UTG07",5121,"HK1003-Rev.0E-3",TT_Task,"55902",-,-,-,0,TK_NotStart,13/06/2022,,26/06/2022,,"SI20UTG2S-34 FS","SI20UTG2S-34","SI20UTG2S-40 FS","SI20UTG2S-40",97,,99,,22,,23,,69,2024,"HK1003 -Blackpoint D2 - Rev.0E DD30092021"
1-3937,SI20UTG2S-20,"HANDRAILS AND GRATING DWGS & CONNECTION FORCE REPORT 20UTG07",5121,"HK1003-Rev.0E-3",TT_Task,"55902",-,-,-,0,TK_NotStart,19/10/2021,,08/11/2021,,"SI20UTG2S-8 FF","SI20UTG2S-8","SI20UTG2S-26 FS","SI20UTG2S-26",63,,66,,14,,15,,35,2968,"HK1003 -Blackpoint D2 - Rev.0E DD30092021"
1-3938,SI20UTG2S-26,"(F) DETAIL DESIGN STEEL STRUCTURE WITH CONTRACTOR 20UTG07",5121,"HK1003-Rev.0E-3",TT_Mile,"55902",-,-,-,0,TK_NotStart,07/03/2022,,07/03/2022,,"SI20UTG2S-20 FS,SI20UTG2S-8 FS,SI20UTG2S-12 FS","SI20UTG2S-20,SI20UTG2S-8,SI20UTG2S-12","SI20UTG2S-28 FS","SI20UTG2S-28",83,,83,,19,,19,,52,2024,"HK1003 -Blackpoint D2 - Rev.0E DD30092021"
1-3939,SI20UTG2S-8,"DETAIL DESIGN STEEL STRUCTURE 20UTG07",5121,"HK1003-Rev.0E-3",TT_Task,"55902",-,-,-,18,TK_Active,21/09/2021,21/09/2021,08/11/2021,,"SI20UTG2S-4 FS","SI20UTG2S-4","SI20UTG2S-26 FS,SI20UTG2S-20 FF,SI20UTG2S-12 FS","SI20UTG2S-26,SI20UTG2S-20,SI20UTG2S-12",59,59,66,,13,13,15,,30,2264,"HK1003 -Blackpoint D2 - Rev.0E DD30092021"
1-3940,SI20UTG2S-4,"(MS3) STEEL STRUCTURE FINAL DIMENSIONS, LOADS AVAILABLE 20UTG07",5121,"HK1003-Rev.0E-3",TT_FinMile,"55902",-,-,-,100,TK_Complete,20/09/2021,20/09/2021,20/09/2021,20/09/2021,"SI20UTG2-41 FS,SI20UTG2-43 FS","SI20UTG2-41,SI20UTG2-43","SI20UTG2S-8 FS","SI20UTG2S-8",59,59,59,59,13,13,13,13,29,,"HK1003 -Blackpoint D2 - Rev.0E DD30092021"
1-3941,SI20UTG2S-28,"FABRICATION DESIGN/FABRICATION/TRANSPORT STEEL STRUC.20UTG07",5121,"HK1003-Rev.0E-3",TT_Task,"55902",-,-,-,0,TK_NotStart,07/03/2022,,12/06/2022,,"SI20UTG2S-26 FS,SI20UTG2S-16 FS","SI20UTG2S-26,SI20UTG2S-16","SI20UTG2S-34 FS","SI20UTG2S-34",83,,97,,19,,22,,52,2024,"HK1003 -Blackpoint D2 - Rev.0E DD30092021"
1-3942,SI20UTG2S-12,"BD - SUBMISSION & APPROVAL - STEEL STRUCTURE 20UTG07",5121,"HK1003-Rev.0E-3",TT_Task,"55902",-,-,-,0,TK_NotStart,09/12/2021,,06/02/2022,,"SI20UTG2S-8 FS,SI-P221-579& FS,SI20UTG2-46 FS","SI20UTG2S-8,SI-P221-579&,SI20UTG2-46","SI20UTG2S-16 FS,SI20UTG2S-26 FS,SI20UTG2S-126 SS","SI20UTG2S-16,SI20UTG2S-26,SI20UTG2S-126",70,,79,,16,,18,,41,2024,"HK1003 -Blackpoint D2 - Rev.0E DD30092021"
1-3943,SI20UTG2S-16,"BD - CONSENT LETTER - STEEL STRUCTURE 20UTG07",5121,"HK1003-Rev.0E-3",TT_Task,"55902",-,-,-,0,TK_NotStart,07/02/2022,,06/03/2022,,"SI20UTG2S-12 FS","SI20UTG2S-12","SI20UTG2S-28 FS","SI20UTG2S-28",79,,83,,18,,19,,48,2024,"HK1003 -Blackpoint D2 - Rev.0E DD30092021"
1-3944,SI20UTG2S-56,"(HS) START ERECTION STEEL STRUCTURE 20UTG04",5121,"HK1003-Rev.0E-3",TT_Mile,"55902",-,-,-,0,TK_NotStart,24/06/2022,,24/06/2022,,"SI20UTG2S-54 FS,SI20UTG5-46 FS","SI20UTG2S-54,SI20UTG5-46","SI20UTG2S-58 FS","SI20UTG2S-58",98,,98,,23,,23,,71,2288,"HK1003 -Blackpoint D2 - Rev.0E DD30092021"
1-3945,SI20UTG2S-60,"(RFE) STEEL STRUCTURE 20UTG04",5121,"HK1003-Rev.0E-3",TT_FinMile,"55902",-,-,-,0,TK_NotStart,07/07/2022,,07/07/2022,,"SI20UTG2S-58 FS","SI20UTG2S-58","SI20QJ-6B42 FS,SI-P222-78 FS","SI20QJ-6B42,SI-P222-78",100,,100,,23,,23,,73,2288,"HK1003 -Blackpoint D2 - Rev.0E DD30092021"
1-3946,SI20UTG2S-58,"ERECTION STEELWORKS & CANOPIES 20UTG04",5121,"HK1003-Rev.0E-3",TT_Task,"55902",-,-,-,0,TK_NotStart,24/06/2022,,07/07/2022,,"SI20UTG2S-56 FS","SI20UTG2S-56","SI20UTG2S-60 FS","SI20UTG2S-60",98,,100,,23,,23,,71,2288,"HK1003 -Blackpoint D2 - Rev.0E DD30092021"
1-3947,SI20UTG2S-50,"HANDRAILS AND GRATING DWGS & CONNECTION FORCE REPORT 20UTG04",5121,"HK1003-Rev.0E-3",TT_Task,"55902",-,-,-,0,TK_NotStart,29/11/2021,,19/12/2021,,"SI20UTG2S-44 FF","SI20UTG2S-44","SI20UTG2S-52 FS,SI20UTG2S-46 FS","SI20UTG2S-52,SI20UTG2S-46",69,,72,,16,,16,,40,2288,"HK1003 -Blackpoint D2 - Rev.0E DD30092021"
1-3948,SI20UTG2S-52,"(F) DETAIL DESIGN STEEL STRUCTURE WITH CONTRACTOR 20UTG04",5121,"HK1003-Rev.0E-3",TT_Mile,"55902",-,-,-,0,TK_NotStart,18/03/2022,,18/03/2022,,"SI20UTG2S-50 FS,SI20UTG2S-44 FS,SI20UTG2S-46 FS","SI20UTG2S-50,SI20UTG2S-44,SI20UTG2S-46","SI20UTG2S-54 FS","SI20UTG2S-54",84,,84,,19,,19,,53,2288,"HK1003 -Blackpoint D2 - Rev.0E DD30092021"
1-3949,SI20UTG2S-44,"DETAIL DESIGN STEEL STRUCTURE 20UTG04",5121,"HK1003-Rev.0E-3",TT_Task,"55902",-,-,-,18,TK_Active,21/09/2021,21/09/2021,08/11/2021,,"SI20UTG2S-42 FS,SI20UTG2S-141 FS","SI20UTG2S-42,SI20UTG2S-141","SI20UTG2S-52 FS,SI20UTG2S-50 FF,SI20UTG2S-46 FS","SI20UTG2S-52,SI20UTG2S-50,SI20UTG2S-46",59,59,66,,13,13,15,,30,2616,"HK1003 -Blackpoint D2 - Rev.0E DD30092021"
1-3950,SI20UTG2S-42,"(MS3) STEEL STRUCTURE FINAL DIMENSIONS, LOADS AVAILABLE 20UTG04",5121,"HK1003-Rev.0E-3",TT_FinMile,"55902",-,-,-,100,TK_Complete,30/08/2021,30/08/2021,30/08/2021,30/08/2021,"SI20UTG2-49 FS","SI20UTG2-49","SI20UTG2S-44 FS,SI20UTG2S-141 FS","SI20UTG2S-44,SI20UTG2S-141",56,56,56,56,13,13,13,13,27,,"HK1003 -Blackpoint D2 - Rev.0E DD30092021"
1-3951,SI20UTG2S-54,"FABRICATION DESIGN/FABRICATION/TRANSPORT STEEL STRUC.20UTG04",5121,"HK1003-Rev.0E-3",TT_Task,"55902",-,-,-,0,TK_NotStart,18/03/2022,,23/06/2022,,"SI20UTG2S-52 FS,SI20UTG2S-48 FS","SI20UTG2S-52,SI20UTG2S-48","SI20UTG2S-56 FS","SI20UTG2S-56",84,,98,,19,,23,,53,2288,"HK1003 -Blackpoint D2 - Rev.0E DD30092021"
1-3952,SI20UTG2S-46,"BD - SUBMISSION & APPROVAL - STEEL STRUCTURE 20UTG04",5121,"HK1003-Rev.0E-3",TT_Task,"55902",-,-,-,0,TK_NotStart,20/12/2021,,17/02/2022,,"SI20UTG2S-44 FS,SI-P221-579& FS,SI20UTG2-54 FS,SI20UTG2S-50 FS","SI20UTG2S-44,SI-P221-579&,SI20UTG2-54,SI20UTG2S-50","SI20UTG2S-48 FS,SI20UTG2S-52 FS","SI20UTG2S-48,SI20UTG2S-52",72,,80,,16,,18,,43,2288,"HK1003 -Blackpoint D2 - Rev.0E DD30092021"
1-3953,SI20UTG2S-48,"BD - CONSENT LETTER - STEEL STRUCTURE 20UTG04",5121,"HK1003-Rev.0E-3",TT_Task,"55902",-,-,-,0,TK_NotStart,18/02/2022,,17/03/2022,,"SI20UTG2S-46 FS","SI20UTG2S-46","SI20UTG2S-54 FS","SI20UTG2S-54",80,,84,,18,,19,,50,2288,"HK1003 -Blackpoint D2 - Rev.0E DD30092021"
1-3954,SI20UTG2S-76,"(HS) START ERECTION STEEL STRUCTURE 20UTG02",5121,"HK1003-Rev.0E-3",TT_Mile,"55902",-,-,-,0,TK_NotStart,13/06/2022,,13/06/2022,,"SI20UTG2S-74 FS,SI20UTG5-26 FS","SI20UTG2S-74,SI20UTG5-26","SI20UTG2S-78 FS","SI20UTG2S-78",97,,97,,22,,22,,69,2376,"HK1003 -Blackpoint D2 - Rev.0E DD30092021"
1-3955,SI20UTG2S-80,"(RFE) STEEL STRUCTURE 20UTG02",5121,"HK1003-Rev.0E-3",TT_FinMile,"55902",-,-,-,0,TK_NotStart,26/06/2022,,26/06/2022,,"SI20UTG2S-78 FS","SI20UTG2S-78","SI20QJ-6B42 FS,SI-P222-78 FS","SI20QJ-6B42,SI-P222-78",99,,99,,23,,23,,71,2376,"HK1003 -Blackpoint D2 - Rev.0E DD30092021"
1-3956,SI20UTG2S-78,"ERECTION STEELWORKS & CANOPIES 20UTG02",5121,"HK1003-Rev.0E-3",TT_Task,"55902",-,-,-,0,TK_NotStart,13/06/2022,,26/06/2022,,"SI20UTG2S-76 FS","SI20UTG2S-76","SI20UTG2S-80 FS","SI20UTG2S-80",97,,99,,22,,23,,69,2376,"HK1003 -Blackpoint D2 - Rev.0E DD30092021"
1-3957,SI20UTG2S-70,"HANDRAILS AND GRATING DWGS & CONNECTION FORCE REPORT 20UTG02",5121,"HK1003-Rev.0E-3",TT_Task,"55902",-,-,-,0,TK_NotStart,14/02/2022,,06/03/2022,,"SI20UTG2S-64 FF","SI20UTG2S-64","SI20UTG2S-72 FS","SI20UTG2S-72",80,,83,,18,,19,,49,2376,"HK1003 -Blackpoint D2 - Rev.0E DD30092021"
1-3958,SI20UTG2S-72,"(F) DETAIL DESIGN STEEL STRUCTURE WITH CONTRACTOR 20UTG02",5121,"HK1003-Rev.0E-3",TT_Mile,"55902",-,-,-,0,TK_NotStart,07/03/2022,,07/03/2022,,"SI20UTG2S-70 FS,SI20UTG2S-64 FS,SI20UTG2S-66 FS","SI20UTG2S-70,SI20UTG2S-64,SI20UTG2S-66","SI20UTG2S-74 FS","SI20UTG2S-74",83,,83,,19,,19,,52,2376,"HK1003 -Blackpoint D2 - Rev.0E DD30092021"
1-3959,SI20UTG2S-64,"DETAIL DESIGN STEEL STRUCTURE 20UTG02",5121,"HK1003-Rev.0E-3",TT_Task,"55902",-,-,-,0,TK_NotStart,21/10/2021,,08/12/2021,,"SI20UTG2S-62 FS","SI20UTG2S-62","SI20UTG2S-72 FS,SI20UTG2S-70 FF,SI20UTG2S-66 FS","SI20UTG2S-72,SI20UTG2S-70,SI20UTG2S-66",63,,70,,14,,16,,35,2376,"HK1003 -Blackpoint D2 - Rev.0E DD30092021"
1-3960,SI20UTG2S-62,"(MS3) STEEL STRUCTURE FINAL DIMENSIONS, LOADS AVAILABLE 20UTG02",5121,"HK1003-Rev.0E-3",TT_FinMile,"55902",-,-,-,0,TK_NotStart,20/10/2021,,20/10/2021,,"SI20UTG2-57 FS","SI20UTG2-57","SI20UTG2S-64 FS","SI20UTG2S-64",63,,63,,14,,14,,35,2376,"HK1003 -Blackpoint D2 - Rev.0E DD30092021"
1-3961,SI20UTG2S-74,"FABRICATION DESIGN/FABRICATION/TRANSPORT STEEL STRUC.20UTG02",5121,"HK1003-Rev.0E-3",TT_Task,"55902",-,-,-,0,TK_NotStart,07/03/2022,,12/06/2022,,"SI20UTG2S-72 FS,SI20UTG2S-68 FS","SI20UTG2S-72,SI20UTG2S-68","SI20UTG2S-76 FS","SI20UTG2S-76",83,,97,,19,,22,,52,2376,"HK1003 -Blackpoint D2 - Rev.0E DD30092021"
1-3962,SI20UTG2S-66,"BD - SUBMISSION & APPROVAL - STEEL STRUCTURE 20UTG02",5121,"HK1003-Rev.0E-3",TT_Task,"55902",-,-,-,0,TK_NotStart,09/12/2021,,06/02/2022,,"SI20UTG2S-64 FS,SI-P221-579& FS,SI20UTG2-62 FS","SI20UTG2S-64,SI-P221-579&,SI20UTG2-62","SI20UTG2S-68 FS,SI20UTG2S-72 FS","SI20UTG2S-68,SI20UTG2S-72",70,,79,,16,,18,,41,2376,"HK1003 -Blackpoint D2 - Rev.0E DD30092021"
1-3963,SI20UTG2S-68,"BD - CONSENT LETTER - STEEL STRUCTURE 20UTG02",5121,"HK1003-Rev.0E-3",TT_Task,"55902",-,-,-,0,TK_NotStart,07/02/2022,,06/03/2022,,"SI20UTG2S-66 FS","SI20UTG2S-66","SI20UTG2S-74 FS","SI20UTG2S-74",79,,83,,18,,19,,48,2376,"HK1003 -Blackpoint D2 - Rev.0E DD30092021"
1-3964,SI20UTG2S-96,"(HS) START ERECTION STEEL STRUCTURE 20UTG03",5121,"HK1003-Rev.0E-3",TT_Mile,"55902",-,-,-,0,TK_NotStart,13/06/2022,,13/06/2022,,"SI20UTG2S-94 FS,SI20UTG5-36 FS","SI20UTG2S-94,SI20UTG5-36","SI20UTG2S-98 FS","SI20UTG2S-98",97,,97,,22,,22,,69,2376,"HK1003 -Blackpoint D2 - Rev.0E DD30092021"
1-3965,SI20UTG2S-100,"(RFE) STEEL STRUCTURE 20UTG03",5121,"HK1003-Rev.0E-3",TT_FinMile,"55902",-,-,-,0,TK_NotStart,26/06/2022,,26/06/2022,,"SI20UTG2S-98 FS","SI20UTG2S-98","SI20QJ-6B42 FS,SI-P222-78 FS","SI20QJ-6B42,SI-P222-78",99,,99,,23,,23,,71,2376,"HK1003 -Blackpoint D2 - Rev.0E DD30092021"
1-3966,SI20UTG2S-98,"ERECTION STEELWORKS & CANOPIES 20UTG03",5121,"HK1003-Rev.0E-3",TT_Task,"55902",-,-,-,0,TK_NotStart,13/06/2022,,26/06/2022,,"SI20UTG2S-96 FS","SI20UTG2S-96","SI20UTG2S-100 FS","SI20UTG2S-100",97,,99,,22,,23,,69,2376,"HK1003 -Blackpoint D2 - Rev.0E DD30092021"
1-3967,SI20UTG2S-90,"HANDRAILS AND GRATING DWGS & CONNECTION FORCE REPORT 20UTG03",5121,"HK1003-Rev.0E-3",TT_Task,"55902",-,-,-,0,TK_NotStart,14/02/2022,,06/03/2022,,"SI20UTG2S-84 FF","SI20UTG2S-84","SI20UTG2S-92 FS","SI20UTG2S-92",80,,83,,18,,19,,49,2376,"HK1003 -Blackpoint D2 - Rev.0E DD30092021"
1-3968,SI20UTG2S-92,"(F) DETAIL DESIGN STEEL STRUCTURE WITH CONTRACTOR 20UTG03",5121,"HK1003-Rev.0E-3",TT_Mile,"55902",-,-,-,0,TK_NotStart,07/03/2022,,07/03/2022,,"SI20UTG2S-90 FS,SI20UTG2S-84 FS,SI20UTG2S-86 FS","SI20UTG2S-90,SI20UTG2S-84,SI20UTG2S-86","SI20UTG2S-94 FS","SI20UTG2S-94",83,,83,,19,,19,,52,2376,"HK1003 -Blackpoint D2 - Rev.0E DD30092021"
1-3969,SI20UTG2S-84,"DETAIL DESIGN STEEL STRUCTURE 20UTG03",5121,"HK1003-Rev.0E-3",TT_Task,"55902",-,-,-,0,TK_NotStart,21/10/2021,,08/12/2021,,"SI20UTG2S-82 FS","SI20UTG2S-82","SI20UTG2S-92 FS,SI20UTG2S-90 FF,SI20UTG2S-86 FS","SI20UTG2S-92,SI20UTG2S-90,SI20UTG2S-86",63,,70,,14,,16,,35,2376,"HK1003 -Blackpoint D2 - Rev.0E DD30092021"
1-3970,SI20UTG2S-82,"(MS3) STEEL STRUCTURE FINAL DIMENSIONS, LOADS AVAILABLE 20UTG03",5121,"HK1003-Rev.0E-3",TT_FinMile,"55902",-,-,-,0,TK_NotStart,20/10/2021,,20/10/2021,,"SI20UTG2-65 FS","SI20UTG2-65","SI20UTG2S-84 FS","SI20UTG2S-84",63,,63,,14,,14,,35,2376,"HK1003 -Blackpoint D2 - Rev.0E DD30092021"
1-3971,SI20UTG2S-94,"FABRICATION DESIGN/FABRICATION/TRANSPORT STEEL STRUC.20UTG03",5121,"HK1003-Rev.0E-3",TT_Task,"55902",-,-,-,0,TK_NotStart,07/03/2022,,12/06/2022,,"SI20UTG2S-92 FS,SI20UTG2S-88 FS","SI20UTG2S-92,SI20UTG2S-88","SI20UTG2S-96 FS","SI20UTG2S-96",83,,97,,19,,22,,52,2376,"HK1003 -Blackpoint D2 - Rev.0E DD30092021"
1-3972,SI20UTG2S-86,"BD - SUBMISSION & APPROVAL - STEEL STRUCTURE 20UTG03",5121,"HK1003-Rev.0E-3",TT_Task,"55902",-,-,-,0,TK_NotStart,09/12/2021,,06/02/2022,,"SI20UTG2S-84 FS,SI-P221-579& FS,SI20UTG2-70 FS","SI20UTG2S-84,SI-P221-579&,SI20UTG2-70","SI20UTG2S-88 FS,SI20UTG2S-92 FS","SI20UTG2S-88,SI20UTG2S-92",70,,79,,16,,18,,41,2376,"HK1003 -Blackpoint D2 - Rev.0E DD30092021"
1-3973,SI20UTG2S-88,"BD - CONSENT LETTER - STEEL STRUCTURE 20UTG03",5121,"HK1003-Rev.0E-3",TT_Task,"55902",-,-,-,0,TK_NotStart,07/02/2022,,06/03/2022,,"SI20UTG2S-86 FS","SI20UTG2S-86","SI20UTG2S-94 FS","SI20UTG2S-94",79,,83,,18,,19,,48,2376,"HK1003 -Blackpoint D2 - Rev.0E DD30092021"
1-3974,SI20UTG2S-116,"(HS) START ERECTION STEEL STRUCTURE 20UTG05",5121,"HK1003-Rev.0E-3",TT_Mile,"55902",-,-,-,0,TK_NotStart,27/05/2022,,27/05/2022,,"SI20UTG2S-114 FS,SI20UTG5-56 FS","SI20UTG2S-114,SI20UTG5-56","SI20UTG2S-118 FS","SI20UTG2S-118",94,,94,,22,,22,,66,2512,"HK1003 -Blackpoint D2 - Rev.0E DD30092021"
1-3975,SI20UTG2S-120,"(RFE) STEEL STRUCTURE 20UTG05",5121,"HK1003-Rev.0E-3",TT_FinMile,"55902",-,-,-,0,TK_NotStart,09/06/2022,,09/06/2022,,"SI20UTG2S-118 FS","SI20UTG2S-118","SI20QJ-6B42 FS,SI-P222-78 FS","SI20QJ-6B42,SI-P222-78",96,,96,,22,,22,,69,2512,"HK1003 -Blackpoint D2 - Rev.0E DD30092021"
1-3976,SI20UTG2S-118,"ERECTION STEELWORKS & CANOPIES 20UTG05",5121,"HK1003-Rev.0E-3",TT_Task,"55902",-,-,-,0,TK_NotStart,27/05/2022,,09/06/2022,,"SI20UTG2S-116 FS","SI20UTG2S-116","SI20UTG2S-120 FS","SI20UTG2S-120",94,,96,,22,,22,,66,2512,"HK1003 -Blackpoint D2 - Rev.0E DD30092021"
1-3977,SI20UTG2S-110,"HANDRAILS AND GRATING DWGS & CONNECTION FORCE REPORT 20UTG05",5121,"HK1003-Rev.0E-3",TT_Task,"55902",-,-,-,0,TK_NotStart,28/01/2022,,17/02/2022,,"SI20UTG2S-104 FF","SI20UTG2S-104","SI20UTG2S-112 FS","SI20UTG2S-112",77,,80,,18,,18,,47,2512,"HK1003 -Blackpoint D2 - Rev.0E DD30092021"
1-3978,SI20UTG2S-112,"(F) DETAIL DESIGN STEEL STRUCTURE WITH CONTRACTOR 20UTG05",5121,"HK1003-Rev.0E-3",TT_Mile,"55902",-,-,-,0,TK_NotStart,18/02/2022,,18/02/2022,,"SI20UTG2S-110 FS,SI20UTG2S-104 FS,SI20UTG2S-106 FS","SI20UTG2S-110,SI20UTG2S-104,SI20UTG2S-106","SI20UTG2S-114 FS","SI20UTG2S-114",80,,80,,18,,18,,50,2512,"HK1003 -Blackpoint D2 - Rev.0E DD30092021"
1-3979,SI20UTG2S-104,"DETAIL DESIGN STEEL STRUCTURE 20UTG05",5121,"HK1003-Rev.0E-3",TT_Task,"55902",-,-,-,20,TK_Active,20/09/2021,20/09/2021,07/11/2021,,"SI20UTG2S-102 FS","SI20UTG2S-102","SI20UTG2S-112 FS,SI20UTG2S-110 FF,SI20UTG2S-106 FS","SI20UTG2S-112,SI20UTG2S-110,SI20UTG2S-106",59,59,66,,13,13,15,,29,2624,"HK1003 -Blackpoint D2 - Rev.0E DD30092021"
1-3980,SI20UTG2S-102,"(MS3) STEEL STRUCTURE FINAL DIMENSIONS, LOADS AVAILABLE 20UTG05",5121,"HK1003-Rev.0E-3",TT_FinMile,"55902",-,-,-,100,TK_Complete,19/09/2021,19/09/2021,19/09/2021,19/09/2021,"SI20UTG2-73 FS","SI20UTG2-73","SI20UTG2S-104 FS","SI20UTG2S-104",59,59,59,59,13,13,13,13,29,,"HK1003 -Blackpoint D2 - Rev.0E DD30092021"
1-3981,SI20UTG2S-114,"FABRICATION DESIGN/FABRICATION/TRANSPORT STEEL STRUC.20UTG05",5121,"HK1003-Rev.0E-3",TT_Task,"55902",-,-,-,0,TK_NotStart,18/02/2022,,26/05/2022,,"SI20UTG2S-112 FS,SI20UTG2S-108 FS","SI20UTG2S-112,SI20UTG2S-108","SI20UTG2S-116 FS","SI20UTG2S-116",80,,94,,18,,22,,50,2512,"HK1003 -Blackpoint D2 - Rev.0E DD30092021"
1-3982,SI20UTG2S-106,"BD - SUBMISSION & APPROVAL - STEEL STRUCTURE 20UTG05",5121,"HK1003-Rev.0E-3",TT_Task,"55902",-,-,-,0,TK_NotStart,08/11/2021,,06/01/2022,,"SI20UTG2S-104 FS,SI-P221-579& FS","SI20UTG2S-104,SI-P221-579&","SI20UTG2S-108 FS,SI20UTG2S-112 FS","SI20UTG2S-108,SI20UTG2S-112",66,,74,,15,,17,,37,2624,"HK1003 -Blackpoint D2 - Rev.0E DD30092021"
1-3983,SI20UTG2S-108,"BD - CONSENT LETTER - STEEL STRUCTURE 20UTG05",5121,"HK1003-Rev.0E-3",TT_Task,"55902",-,-,-,0,TK_NotStart,07/01/2022,,03/02/2022,,"SI20UTG2S-106 FS","SI20UTG2S-106","SI20UTG2S-114 FS","SI20UTG2S-114",74,,78,,17,,18,,44,2624,"HK1003 -Blackpoint D2 - Rev.0E DD30092021"
1-3984,SI20UTG2S-136,"(HS) START ERECTION STEEL STRUCTURE 20UTG06",5121,"HK1003-Rev.0E-3",TT_Mile,"55902",-,-,-,0,TK_NotStart,13/06/2022,,13/06/2022,,"SI20UTG2S-134 FS,SI20UTG5-66 FS","SI20UTG2S-134,SI20UTG5-66","SI20UTG2S-138 FS","SI20UTG2S-138",97,,97,,22,,22,,69,2376,"HK1003 -Blackpoint D2 - Rev.0E DD30092021"
1-3985,SI20UTG2S-140,"(RFE) STEEL STRUCTURE 20UTG06",5121,"HK1003-Rev.0E-3",TT_FinMile,"55902",-,-,-,0,TK_NotStart,26/06/2022,,26/06/2022,,"SI20UTG2S-138 FS","SI20UTG2S-138","SI20QJ-6B42 FS,SI-P222-78 FS","SI20QJ-6B42,SI-P222-78",99,,99,,23,,23,,71,2376,"HK1003 -Blackpoint D2 - Rev.0E DD30092021"
1-3986,SI20UTG2S-138,"ERECTION STEELWORKS & CANOPIES 20UTG06",5121,"HK1003-Rev.0E-3",TT_Task,"55902",-,-,-,0,TK_NotStart,13/06/2022,,26/06/2022,,"SI20UTG2S-136 FS","SI20UTG2S-136","SI20UTG2S-140 FS","SI20UTG2S-140",97,,99,,22,,23,,69,2376,"HK1003 -Blackpoint D2 - Rev.0E DD30092021"
1-3987,SI20UTG2S-130,"HANDRAILS AND GRATING DWGS & CONNECTION FORCE REPORT 20UTG06",5121,"HK1003-Rev.0E-3",TT_Task,"55902",-,-,-,0,TK_NotStart,14/02/2022,,06/03/2022,,"SI20UTG2S-124 FF","SI20UTG2S-124","SI20UTG2S-132 FS","SI20UTG2S-132",80,,83,,18,,19,,49,2376,"HK1003 -Blackpoint D2 - Rev.0E DD30092021"
1-3988,SI20UTG2S-132,"(F) DETAIL DESIGN STEEL STRUCTURE WITH CONTRACTOR 20UTG06",5121,"HK1003-Rev.0E-3",TT_Mile,"55902",-,-,-,0,TK_NotStart,07/03/2022,,07/03/2022,,"SI20UTG2S-130 FS,SI20UTG2S-124 FS,SI20UTG2S-126 FS","SI20UTG2S-130,SI20UTG2S-124,SI20UTG2S-126","SI20UTG2S-134 FS","SI20UTG2S-134",83,,83,,19,,19,,52,2376,"HK1003 -Blackpoint D2 - Rev.0E DD30092021"
1-3989,SI20UTG2S-124,"DETAIL DESIGN STEEL STRUCTURE 20UTG06",5121,"HK1003-Rev.0E-3",TT_Task,"55902",-,-,-,0,TK_NotStart,21/10/2021,,08/12/2021,,"SI20UTG2S-122 FS","SI20UTG2S-122","SI20UTG2S-132 FS,SI20UTG2S-130 FF,SI20UTG2S-126 FS","SI20UTG2S-132,SI20UTG2S-130,SI20UTG2S-126",63,,70,,14,,16,,35,2376,"HK1003 -Blackpoint D2 - Rev.0E DD30092021"
1-3990,SI20UTG2S-122,"(MS3) STEEL STRUCTURE FINAL DIMENSIONS, LOADS AVAILABLE 20UTG06",5121,"HK1003-Rev.0E-3",TT_FinMile,"55902",-,-,-,0,TK_NotStart,20/10/2021,,20/10/2021,,"SI20UTG2-81 FS","SI20UTG2-81","SI20UTG2S-124 FS","SI20UTG2S-124",63,,63,,14,,14,,35,2376,"HK1003 -Blackpoint D2 - Rev.0E DD30092021"
1-3991,SI20UTG2S-134,"FABRICATION DESIGN/FABRICATION/TRANSPORT STEEL STRUC.20UTG06",5121,"HK1003-Rev.0E-3",TT_Task,"55902",-,-,-,0,TK_NotStart,07/03/2022,,12/06/2022,,"SI20UTG2S-132 FS,SI20UTG2S-128 FS","SI20UTG2S-132,SI20UTG2S-128","SI20UTG2S-136 FS","SI20UTG2S-136",83,,97,,19,,22,,52,2376,"HK1003 -Blackpoint D2 - Rev.0E DD30092021"
1-3992,SI20UTG2S-126,"BD - SUBMISSION & APPROVAL - STEEL STRUCTURE 20UTG06",5121,"HK1003-Rev.0E-3",TT_Task,"55902",-,-,-,0,TK_NotStart,09/12/2021,,06/02/2022,,"SI20UTG2S-124 FS,SI-P221-579& FS,SI20UTG2S-12 SS","SI20UTG2S-124,SI-P221-579&,SI20UTG2S-12","SI20UTG2S-128 FS,SI20UTG2S-132 FS","SI20UTG2S-128,SI20UTG2S-132",70,,79,,16,,18,,41,2376,"HK1003 -Blackpoint D2 - Rev.0E DD30092021"
1-3993,SI20UTG2S-128,"BD - CONSENT LETTER - STEEL STRUCTURE 20UTG06",5121,"HK1003-Rev.0E-3",TT_Task,"55902",-,-,-,0,TK_NotStart,07/02/2022,,06/03/2022,,"SI20UTG2S-126 FS","SI20UTG2S-126","SI20UTG2S-134 FS","SI20UTG2S-134",79,,83,,18,,19,,48,2376,"HK1003 -Blackpoint D2 - Rev.0E DD30092021"
1-3994,SI--BAW2-87,"BASIC DESIGN IN-/ OUTDOOR GROUNDING",5121,"HK1003-Rev.0E-3",TT_Task,"55902",-,-,-,100,TK_Complete,29/06/2021,29/06/2021,09/08/2021,09/08/2021,"SI--BAW2-13 FS","SI--BAW2-13","SI--BAW2-88 FS","SI--BAW2-88",47,47,53,53,11,11,12,12,19,,"HK1003 -Blackpoint D2 - Rev.0E DD30092021"
1-3995,SI--BAW2-88,"DETAIL DESIGN IN-/ OUTDOOR GROUNDING",5121,"HK1003-Rev.0E-3",TT_Task,"55902",-,-,-,61,TK_Active,10/08/2021,10/08/2021,01/11/2021,,"SI--BAW2-87 FS","SI--BAW2-87","SI--BAW2-75 FS","SI--BAW2-75",53,53,65,,12,12,15,,25,1792,"HK1003 -Blackpoint D2 - Rev.0E DD30092021"
1-3996,SI20UBA4B44,"LOGISTICS AND CUSTOMS PREPARATION ELECTRICAL MODULES 20UBA7310/30",5121,"HK1003-Rev.0E-3",TT_Task,"55902",-,-,-,0,TK_NotStart,01/04/2022,,28/04/2022,,"SI20UBA3B78 FS","SI20UBA3B78","SI20UBA3G89 FS,SI20UBA3H20# FF","SI20UBA3G89,SI20UBA3H20#",86,,90,,20,,21,,55,792,"HK1003 -Blackpoint D2 - Rev.0E DD30092021"
1-3997,SI20UBA3B78,"TIMES OF COMPLETION (FINAL DATA IN KANLOG) ELECTRICAL MODULES 20UBA7310/30",5121,"HK1003-Rev.0E-3",TT_FinMile,"55902",-,-,-,0,TK_NotStart,31/03/2022,,31/03/2022,,"SI20UBA3H55 FS,SI20UBA3-92 FS,SI20UBA3-89 FS","SI20UBA3H55,SI20UBA3-92,SI20UBA3-89","SI20UBA4B44 FS,SI20UBA3H20# FF","SI20UBA4B44,SI20UBA3H20#",86,,86,,20,,20,,54,792,"HK1003 -Blackpoint D2 - Rev.0E DD30092021"
1-3998,SI20UBA4G58,"TRANSPORT ELECTRICAL MODULES 20UBA7310/30 (TO SITE)",5121,"HK1003-Rev.0E-3",TT_Task,"55902",-,-,-,0,TK_NotStart,29/04/2022,,23/06/2022,,"SI20UBA3G89 FS,SI-P222-100 FS","SI20UBA3G89,SI-P222-100","SI20UBA4B47 FS","SI20UBA4B47",90,,98,,21,,23,,60,792,"HK1003 -Blackpoint D2 - Rev.0E DD30092021"
1-3999,SI20UBA3G89,"(RFS) READY FOR SHIPMENT TO SITE ELECTRICAL MODULES 20UBA7310/30(TO SITE)",5121,"HK1003-Rev.0E-3",TT_FinMile,"55902",-,-,-,0,TK_NotStart,28/04/2022,,28/04/2022,,"SI20UBA4B44 FS","SI20UBA4B44","SI20UBA4G58 FS","SI20UBA4G58",90,,90,,21,,21,,59,792,"HK1003 -Blackpoint D2 - Rev.0E DD30092021"
1-4000,SI20UBA4G57,"(ET4a) I&C CUBICLES AT WORKSHOP READY FOR COMPONENT INSTALLATION 20UBA7310/30",5121,"HK1003-Rev.0E-3",TT_Mile,"55902",-,-,-,0,TK_NotStart,19/11/2021,,19/11/2021,,"SI20CJ-4-11 FS","SI20CJ-4-11","SI20UBA3H55 FS","SI20UBA3H55",67,,67,,15,,15,,39,584,"HK1003 -Blackpoint D2 - Rev.0E DD30092021"
1-4001,SI20CJ-4-11,"TRANSPORT TO WORKSHOP BOP I&C CABINETS FOR ELECTRICAL MODULES 20UBA7310/30",5121,"HK1003-Rev.0E-3",TT_Task,"55902",-,-,-,0,TK_NotStart,12/11/2021,,17/11/2021,,"SI20CJ-3-53 FS","SI20CJ-3-53","SI20UBA4-51 FS,SI20UBA4G61 FS,SI20UBA4G57 FS","SI20UBA4-51,SI20UBA4G61,SI20UBA4G57",66,,67,,15,,15,,38,584,"HK1003 -Blackpoint D2 - Rev.0E DD30092021"
1-4002,SI20CJ-3-53,"MANUFACTURING BOP I&C CABINETS FOR ELECTRICAL MODULES 20UBA7310/30 AND OM EQUIP. FOR PRECOMMISSIONING TEST",5121,"HK1003-Rev.0E-3",TT_Task,"55902",-,-,-,41,TK_Active,31/08/2021,31/08/2021,11/11/2021,,"SI20CJ-2-52 FS,SI--2222-30 FS,SI20CJ-3-21 SS","SI20CJ-2-52,SI--2222-30,SI20CJ-3-21","SI20CJ-4-11 FS","SI20CJ-4-11",56,56,66,,13,13,15,,27,584,"HK1003 -Blackpoint D2 - Rev.0E DD30092021"
1-4003,SI20CJ-2-52,"(DF) GT/BOP I&C CABINETS FOR ELECTRICAL MODULES 20UBA7310/30",5121,"HK1003-Rev.0E-3",TT_FinMile,"55902",-,-,-,100,TK_Complete,31/08/2021,31/08/2021,31/08/2021,31/08/2021,"SI20CJ-3-21 FS","SI20CJ-3-21","SI20CJ-3-53 FS","SI20CJ-3-53",56,56,56,56,13,13,13,13,27,,"HK1003 -Blackpoint D2 - Rev.0E DD30092021"
1-4004,SI20CJ-3-21,"DETAIL DESIGN HW ENGINEERING BOP I&C CABINETS FOR ELECTRICAL MODULES 20UBA20UBA7310/30",5121,"HK1003-Rev.0E-3",TT_Task,"55902",-,-,-,100,TK_Complete,26/04/2021,26/04/2021,30/08/2021,30/08/2021,"SI--C--2A40 SS,SI--C--2C55 FS,SI--C--2-85 FS","SI--C--2A40,SI--C--2C55,SI--C--2-85","SI20CJ-2-52 FS,SI20CJ-3-53 SS,SI20CJ-3-52 FF,SI20CJ-3-25 FF","SI20CJ-2-52,SI20CJ-3-53,SI20CJ-3-52,SI20CJ-3-25",38,38,56,56,8,8,13,13,10,,"HK1003 -Blackpoint D2 - Rev.0E DD30092021"
1-4005,SI20UBA3-90,"TEST PREPARATION & ASSEMBLY  TEST FACILITY 20UBA7310/30",5121,"HK1003-Rev.0E-3",TT_Task,"55902",-,-,-,0,TK_NotStart,04/02/2022,,17/02/2022,,"SI20UBA4-63 FS","SI20UBA4-63","SI20UBA3-91 FS","SI20UBA3-91",78,,80,,18,,18,,48,584,"HK1003 -Blackpoint D2 - Rev.0E DD30092021"
1-4006,SI20UBA3-91,"PRECOMMISSIONING TEST 20UBA7310/30",5121,"HK1003-Rev.0E-3",TT_Task,"55902",-,-,-,0,TK_NotStart,18/02/2022,,10/03/2022,,"SI20UBA3-90 FS,SI20UBA3-87 SS","SI20UBA3-90,SI20UBA3-87","SI20UBA3-92 FS,SI20UBA3-94 FS,SI--CKA2-19 SS","SI20UBA3-92,SI20UBA3-94,SI--CKA2-19",80,,83,,18,,19,,50,584,"HK1003 -Blackpoint D2 - Rev.0E DD30092021"
1-4007,SI20UBA3-92,"CLEANING AND PACKING TEST FACILITY 20UBA7310/30",5121,"HK1003-Rev.0E-3",TT_Task,"55902",-,-,-,0,TK_NotStart,18/03/2022,,31/03/2022,,"SI20UBA3-91 FS,SI20UBA3-94 FS","SI20UBA3-91,SI20UBA3-94","SI20UBA3B78 FS","SI20UBA3B78",84,,86,,19,,20,,53,792,"HK1003 -Blackpoint D2 - Rev.0E DD30092021"
1-4008,SI20UBA4B45,"LOGISTICS AND CUSTOMS PREPARATION BATTERIES BTA (TO SITE)",5121,"HK1003-Rev.0E-3",TT_Task,"55902",-,-,-,0,TK_NotStart,07/04/2022,,04/05/2022,,"SI20UBA3B79 FS","SI20UBA3B79","SI20UBA3G90 FS","SI20UBA3G90",87,,91,,20,,21,,56,1536,"HK1003 -Blackpoint D2 - Rev.0E DD30092021"
1-4009,SI20UBA3B79,"TIMES OF COMPLETION (FINAL DATA IN KANLOG) BATTERIES BTA",5121,"HK1003-Rev.0E-3",TT_FinMile,"55902",-,-,-,0,TK_NotStart,06/04/2022,,06/04/2022,,"SI20BTA3A25 FS","SI20BTA3A25","SI20UBA4B45 FS","SI20UBA4B45",87,,87,,20,,20,,56,1536,"HK1003 -Blackpoint D2 - Rev.0E DD30092021"
1-4010,SI20UBA4G59,"TRANSPORT BATTERIES BTA (TO SITE)",5121,"HK1003-Rev.0E-3",TT_Task,"55902",-,-,-,0,TK_NotStart,19/10/2022,,13/12/2022,,"SI20UBA3G90 FS,SI20UBA4G54 FF","SI20UBA3G90,SI20UBA4G54","SI20BTA3A26 FS","SI20BTA3A26",115,,123,,26,,28,,83,200,"HK1003 -Blackpoint D2 - Rev.0E DD30092021"
1-4011,SI20UBA3G90,"(RFS) READY FOR SHIPMENT TO SITE  BATTERIES BTA (TO SITE)",5121,"HK1003-Rev.0E-3",TT_FinMile,"55902",-,-,-,0,TK_NotStart,18/10/2022,,18/10/2022,,"SI20UBA4B45 FS","SI20UBA4B45","SI20UBA4G59 FS","SI20UBA4G59",115,,115,,26,,26,,83,200,"HK1003 -Blackpoint D2 - Rev.0E DD30092021"
1-4012,SI20PAA2-55,"LOGISTICS AND CUSTOMS PREPARATION BACK WASH STRAINER 20PAA11",5121,"HK1003-Rev.0E-3",TT_Task,"55902",-,-,-,0,TK_NotStart,21/12/2021,,17/01/2022,,"SI20PAA2-45 FS,SI20PAS4B10 SS","SI20PAA2-45,SI20PAS4B10","SI20PAA2-60 FS","SI20PAA2-60",72,,76,,16,,17,,43,2712,"HK1003 -Blackpoint D2 - Rev.0E DD30092021"
1-4013,SI20PAA2-45,"TIMES OF COMPLETION (FINAL DATA IN KANLOG) BACK WASH STRAINER 20PAA11",5121,"HK1003-Rev.0E-3",TT_FinMile,"55902",-,-,-,0,TK_NotStart,08/12/2021,,08/12/2021,,"SI20PAA2-40 FS","SI20PAA2-40","SI20PAA2-55 FS","SI20PAA2-55",70,,70,,16,,16,,41,2808,"HK1003 -Blackpoint D2 - Rev.0E DD30092021"
1-4014,SI20PAA2-75,"ERECTION BACK WASH STRAINER 20PAA11",5121,"HK1003-Rev.0E-3",TT_Task,"55902",-,-,-,0,TK_NotStart,15/03/2022,,11/04/2022,,"SI20PAA2-70 FS,SI20PAS6B15 SS,SI20UQX5-60 FS","SI20PAA2-70,SI20PAS6B15,SI20UQX5-60","SI20PAR8-06 FS,SI20PAR6A15 FF","SI20PAR8-06,SI20PAR6A15",84,,88,,19,,20,,53,2712,"HK1003 -Blackpoint D2 - Rev.0E DD30092021"
1-4015,SI20BR2-20,"CONTRACT INTO FORCE FREQUENCY CONVERTER 20BRx To be deleted.",5121,"HK1003-Rev.0E-3",TT_Mile,"55902",-,-,-,100,TK_Complete,19/08/2021,19/08/2021,19/08/2021,19/08/2021,"SI20BR2-10 FS","SI20BR2-10","SI20BR2-25 FS","SI20BR2-25",54,54,54,54,12,12,12,12,26,,"HK1003 -Blackpoint D2 - Rev.0E DD30092021"
1-4016,SI20BR2-10,"QUOTATION STAGE FREQUENCY CONVERTER 20BR To be deleted.",5121,"HK1003-Rev.0E-3",TT_Task,"55902",-,-,-,100,TK_Complete,24/06/2021,24/06/2021,18/08/2021,18/08/2021,"SI20BR2-15 FS","SI20BR2-15","SI20BR2-20 FS","SI20BR2-20",46,46,54,54,10,10,12,12,19,,"HK1003 -Blackpoint D2 - Rev.0E DD30092021"
1-4017,SI20BR2-30,"TRANSPORT TO WORKSHOP FREQUENCY CONVERTER 20BRx (ST. INGBERT) To be deleted.",5121,"HK1003-Rev.0E-3",TT_Task,"55902",-,-,-,0,TK_NotStart,14/06/2022,,15/06/2022,,"SI20BR2-25 FS","SI20BR2-25","SI20UBA3G55 FS","SI20UBA3G55",97,,97,,22,,22,,69,216,"HK1003 -Blackpoint D2 - Rev.0E DD30092021"
1-4018,SI20BR2-15,"RFQ FREQUENCY CONVERTER 20BRx To be deleted.",5121,"HK1003-Rev.0E-3",TT_Mile,"55902",-,-,-,100,TK_Complete,24/06/2021,24/06/2021,24/06/2021,24/06/2021,"SI20BR2-5 FS","SI20BR2-5","SI20BR2-10 FS","SI20BR2-10",46,46,46,46,10,10,10,10,19,,"HK1003 -Blackpoint D2 - Rev.0E DD30092021"
1-4019,SI20BR2-5,"BASIC DESIGN / SPECIFICATION / PREPARE RFQ FREQUENCY CONVERTER 20BRx  To be deleted.",5121,"HK1003-Rev.0E-3",TT_Task,"55902",-,-,-,100,TK_Complete,27/05/2021,27/05/2021,23/06/2021,23/06/2021,"SI20BR2-41 FS","SI20BR2-41","SI20BR2-15 FS","SI20BR2-15",42,42,46,46,9,9,10,10,14,,"HK1003 -Blackpoint D2 - Rev.0E DD30092021"
1-4020,SI20BR2-25,"DETAIL DESIGN /MANUFACTURING / SHOP TEST FREQUENCY CONVERTER 20BRx To be deleted.",5121,"HK1003-Rev.0E-3",TT_Task,"55902",-,-,-,0,TK_NotStart,15/01/2022,,13/06/2022,,"SI20BR2-20 FS","SI20BR2-20","SI20BR2-30 FS","SI20BR2-30",76,,97,,17,,22,,45,216,"HK1003 -Blackpoint D2 - Rev.0E DD30092021"
1-4021,SI20BR2-41,"(DF) INPUT FROM PTEC AVAILABLE (PUMP SPEC/PUMP MOTOR SPEC) To be deleted.",5121,"HK1003-Rev.0E-3",TT_Mile,"55902",-,-,-,100,TK_Complete,27/05/2021,27/05/2021,27/05/2021,27/05/2021,"SI20PAS2A85 FS","SI20PAS2A85","SI20BR2-5 FS","SI20BR2-5",42,42,42,42,9,9,9,9,14,,"HK1003 -Blackpoint D2 - Rev.0E DD30092021"
1-4022,SI20MBV2-07,"ERECTION MANUALS ON SITE  LUBE OIL TRANSFER  SYSTEMS MBV90",5121,"HK1003-Rev.0E-3",TT_Mile,"55902",-,-,-,0,TK_NotStart,05/07/2022,,05/07/2022,,"SI20MBV3-82 FS","SI20MBV3-82","SI20MBV6-15 FS","SI20MBV6-15",100,,100,,23,,23,,72,872,"HK1003 -Blackpoint D2 - Rev.0E DD30092021"
1-4023,SI20MBV2-81,"QUOTATION STAGE LUBE OIL TRANSFER  SYSTEMS MBV90",5121,"HK1003-Rev.0E-3",TT_Task,"55902",-,-,-,100,TK_Complete,09/04/2021,09/04/2021,03/06/2021,03/06/2021,"SI20MBV2-77 FS","SI20MBV2-77","SI20MBV2-86 FS","SI20MBV2-86",35,35,43,43,8,8,10,10,8,,"HK1003 -Blackpoint D2 - Rev.0E DD30092021"
1-4024,SI20MBV2-77,"BASIC DESIGN / PREP. LUBE OIL TRANSFER  SYSTEMS MBV90",5121,"HK1003-Rev.0E-3",TT_Task,"55902",-,-,-,100,TK_Complete,05/02/2021,05/02/2021,08/04/2021,08/04/2021,"SI-----1-05 FS","SI-----1-05","SI20MBV2-81 FS","SI20MBV2-81",26,26,35,35,6,6,8,8,4,,"HK1003 -Blackpoint D2 - Rev.0E DD30092021"
1-4025,SI20MBV3-27,"DETAIL DESIGN LUBE OIL TRANSFER  SYSTEMS MBV90",5121,"HK1003-Rev.0E-3",TT_Task,"55902",-,-,-,100,TK_Complete,04/06/2021,04/06/2021,29/09/2021,29/09/2021,"SI20MBV2-86 FS","SI20MBV2-86","SI20MBV3-82 FS,SI20MBV3-83 FS,SI20MBV3-83 FF","SI20MBV3-82,SI20MBV3-83,SI20MBV3-83",43,43,60,60,10,10,14,14,16,,"HK1003 -Blackpoint D2 - Rev.0E DD30092021"
1-4026,SI20MBV2-89,"(DF) INPUT FOR MS3 LUBE OIL TRANSFER  SYSTEMS MBV90",5121,"HK1003-Rev.0E-3",TT_FinMile,"55902",-,-,-,100,TK_Complete,17/06/2021,17/06/2021,17/06/2021,17/06/2021,"SI20MBV2-86 SS","SI20MBV2-86","SI20UMX2-60 FS,SI20MBV3-83 FS","SI20UMX2-60,SI20MBV3-83",45,45,45,45,10,10,10,10,17,,"HK1003 -Blackpoint D2 - Rev.0E DD30092021"
1-4027,SI20MBV6-40,"(RFP) READY FOR PIPE CONNECTION CLEAN/DIRTY OIL TANK MBV90",5121,"HK1003-Rev.0E-3",TT_FinMile,"55902",-,-,-,0,TK_NotStart,29/08/2022,,29/08/2022,,"SI20MBV6-15 SS","SI20MBV6-15","SI20MBV6-85 FS,SI20UEN615 FF,SI20TPM17A6-20 FS,SI20TPM18A6-20 FS","SI20MBV6-85,SI20UEN615,SI20TPM17A6-20,SI20TPM18A6-20",108,,108,,25,,25,,79,1040,"HK1003 -Blackpoint D2 - Rev.0E DD30092021"
1-4028,SI20MBV6-15,"MECHANICAL ERECTION CLEAN/DIRTY OIL TANK MBV90",5121,"HK1003-Rev.0E-3",TT_Task,"55902",-,-,-,0,TK_NotStart,02/08/2022,,03/10/2022,,"SI20MBV2-07 FS,SI20MBV4-41 FS,SI20UMX5B46 FS","SI20MBV2-07,SI20MBV4-41,SI20UMX5B46","SI20MBV6-40 SS,SI20MBV7-15 FF,SI20MBV8-15 FS,SI20MBV6-75 SS","SI20MBV6-40,SI20MBV7-15,SI20MBV8-15,SI20MBV6-75",104,,113,,24,,26,,76,872,"HK1003 -Blackpoint D2 - Rev.0E DD30092021"
1-4029,SI20MBV8-15,"(TOP-MBV90) LUBE OIL TRANSFER SYSTEM MBV90",5121,"HK1003-Rev.0E-3",TT_FinMile,"55902",-,-,-,0,TK_NotStart,25/05/2023,,25/05/2023,,"SI20MBV7-15 FS,SI20MBV7-15 FF,SI20MBV6-15 FS,SI20MBV6-75 FS,SI20MBV7-20 FS,SI20MBV6-85 FS,SI20MBV7-25 FS","SI20MBV7-15,SI20MBV7-15,SI20MBV6-15,SI20MBV6-75,SI20MBV7-20,SI20MBV6-85,SI20MBV7-25","SI20MB-9-15 FS,SI20MBV8-155 FS,SI20TPM17A8-30 FS,SI20TPM18A8-30 FS","SI20MB-9-15,SI20MBV8-155,SI20TPM17A8-30,SI20TPM18A8-30",146,,146,,34,,34,,97,64,"HK1003 -Blackpoint D2 - Rev.0E DD30092021"
1-4030,SI20MBV7-15,"ELECTRICAL ERECTION CLEAN/DIRTY OIL TANK MBV90",5121,"HK1003-Rev.0E-3",TT_Task,"55902",-,-,-,0,TK_NotStart,25/10/2022,,31/10/2022,,"SI20MBV6-15 FF","SI20MBV6-15","SI20MBV8-15 FS,SI20MBV8-15 FF,SI20BZK7D11# FF,SI20BZK7D11# SS","SI20MBV8-15,SI20MBV8-15,SI20BZK7D11#,SI20BZK7D11#",116,,117,,27,,27,,84,1712,"HK1003 -Blackpoint D2 - Rev.0E DD30092021"
1-4031,SI20MBV2-86,"CONTRACT INTO FORCE LUBE OIL TRANSFER  SYSTEMS MBV90",5121,"HK1003-Rev.0E-3",TT_Mile,"55902",-,-,-,100,TK_Complete,04/06/2021,04/06/2021,04/06/2021,04/06/2021,"SI20MBV2-81 FS","SI20MBV2-81","SI20MBV3-27 FS,SI20MBV2-89 SS,SI20MBV2-67 SS,SI20MBV3-82 FS,SI20MBV2-90 FS","SI20MBV3-27,SI20MBV2-89,SI20MBV2-67,SI20MBV3-82,SI20MBV2-90",43,43,43,43,10,10,10,10,16,,"HK1003 -Blackpoint D2 - Rev.0E DD30092021"
1-4032,SI20MBV2-67,"(DF) INPUT FOR M2 LUBE OIL TRANSFER  SYSTEMS MBV90",5121,"HK1003-Rev.0E-3",TT_FinMile,"55902",-,-,-,100,TK_Complete,17/06/2021,17/06/2021,17/06/2021,17/06/2021,"SI20MBV2-86 SS","SI20MBV2-86","SI---4P2A10 FS","SI---4P2A10",45,45,45,45,10,10,10,10,17,,"HK1003 -Blackpoint D2 - Rev.0E DD30092021"
1-4033,SI20MBV3-81,"(RFS) READY FOR SHIPMENT LUBE OIL TRANSFER  SYSTEMS MBV90",5121,"HK1003-Rev.0E-3",TT_FinMile,"55902",-,-,-,0,TK_NotStart,30/05/2022,,30/05/2022,,"SI20MBV4B10 FS","SI20MBV4B10","SI20MBV4-26 FS","SI20MBV4-26",95,,95,,22,,22,,67,872,"HK1003 -Blackpoint D2 - Rev.0E DD30092021"
1-4034,SI20MBV4-41,"(OTD-OS) ON SITE LUBE OIL TRANSFER  SYSTEMS MBV90",5121,"HK1003-Rev.0E-3",TT_FinMile,"55902",-,-,-,0,TK_NotStart,01/08/2022,,01/08/2022,,"SI20MBV4-26 FS","SI20MBV4-26","SI20MBV6-15 FS,SI20MBV6-75 FS,SI20MBV6-85 FS","SI20MBV6-15,SI20MBV6-75,SI20MBV6-85",104,,104,,24,,24,,76,872,"HK1003 -Blackpoint D2 - Rev.0E DD30092021"
1-4035,SI20MBV4-26,"TRANSPORT LUBE OIL TRANSFER  SYSTEMS MBV90",5121,"HK1003-Rev.0E-3",TT_Task,"55902",-,-,-,0,TK_NotStart,31/05/2022,,01/08/2022,,"SI20MBV3-81 FS","SI20MBV3-81","SI20MBV4-41 FS","SI20MBV4-41",95,,104,,22,,24,,67,872,"HK1003 -Blackpoint D2 - Rev.0E DD30092021"
1-4036,SI20MBV3-82,"MANUFACTURING / SHOP TEST LUBE OIL TRANSFER  SYSTEMS MBV90",5121,"HK1003-Rev.0E-3",TT_Task,"55902",-,-,-,0,TK_NotStart,14/12/2021,,02/05/2022,,"SI20MBV3-27 FS,SI20MBV2-86 FS,SI20MBV3-83 FS,SI20MBV3-83 FF,SI20MBV3-83 SS","SI20MBV3-27,SI20MBV2-86,SI20MBV3-83,SI20MBV3-83,SI20MBV3-83","SI20MBV3B70 FS,SI20MBV2-07 FS","SI20MBV3B70,SI20MBV2-07",71,,91,,16,,21,,42,872,"HK1003 -Blackpoint D2 - Rev.0E DD30092021"
1-4037,SI20MBV4B10,"LOGISTICS AND CUSTOMS PREPARATION LUBE OIL TRANSFER  SYSTEMS MBV90",5121,"HK1003-Rev.0E-3",TT_Task,"55902",-,-,-,0,TK_NotStart,03/05/2022,,30/05/2022,,"SI20MBV3B70 FS","SI20MBV3B70","SI20MBV3-81 FS","SI20MBV3-81",91,,95,,21,,22,,61,872,"HK1003 -Blackpoint D2 - Rev.0E DD30092021"
1-4038,SI20MBV3B70,"TIMES OF COMPLETION (FINAL DATA IN KANLOG) LUBE OIL TRANSFER  SYSTEMS MBV90",5121,"HK1003-Rev.0E-3",TT_FinMile,"55902",-,-,-,0,TK_NotStart,02/05/2022,,02/05/2022,,"SI20MBV3-82 FS","SI20MBV3-82","SI20MBV4B10 FS","SI20MBV4B10",91,,91,,21,,21,,61,872,"HK1003 -Blackpoint D2 - Rev.0E DD30092021"
1-4039,SI20MBV2-90,"(DF) INPUT FOR VEL  LUBE OIL TRANSFER  SYSTEMS MBV90",5121,"HK1003-Rev.0E-3",TT_Mile,"55902",-,-,-,100,TK_Complete,18/06/2021,18/06/2021,18/06/2021,18/06/2021,"SI20MBV2-86 FS","SI20MBV2-86","SP--B--2-61 FS","SP--B--2-61",45,45,45,45,10,10,10,10,18,,"HK1003 -Blackpoint D2 - Rev.0E DD30092021"
1-4040,SI20MBV6-80,"(RFP) READY FOR PIPE CONNECTION LUBE OIL TRANSFER PUMPS MBV90",5121,"HK1003-Rev.0E-3",TT_FinMile,"55902",-,-,-,0,TK_NotStart,12/09/2022,,12/09/2022,,"SI20MBV6-75 SS","SI20MBV6-75","SI20MBV6-85 FS,SI20UEN615 FF","SI20MBV6-85,SI20UEN615",110,,110,,25,,25,,81,872,"HK1003 -Blackpoint D2 - Rev.0E DD30092021"
1-4041,SI20MBV6-75,"MECHANICAL ERECTION LUBE OIL TRANSFER PUMPS MBV90",5121,"HK1003-Rev.0E-3",TT_Task,"55902",-,-,-,0,TK_NotStart,30/08/2022,,26/09/2022,,"SI20MBV4-41 FS,SI20UMX5B46 FS,SI20MBV6-15 SS","SI20MBV4-41,SI20UMX5B46,SI20MBV6-15","SI20MBV6-80 SS,SI20MBV7-20 FF,SI20MBV8-15 FS","SI20MBV6-80,SI20MBV7-20,SI20MBV8-15",108,,112,,25,,26,,79,872,"HK1003 -Blackpoint D2 - Rev.0E DD30092021"
1-4042,SI20MBV7-20,"ELECTRICAL ERECTION LUBE OIL TRANSFER PUMPS MBV90",5121,"HK1003-Rev.0E-3",TT_Task,"55902",-,-,-,0,TK_NotStart,27/09/2022,,24/10/2022,,"SI20MBV6-75 FF","SI20MBV6-75","SI20MBV8-15 FS,SI20BZK7D11# FF,SI20BZK7D11# SS","SI20MBV8-15,SI20BZK7D11#,SI20BZK7D11#",112,,116,,26,,27,,82,1768,"HK1003 -Blackpoint D2 - Rev.0E DD30092021"
1-4043,SI20MBV6-85,"ERECTION,NDT,PT LUBE OIL TRANSFER  PIPING  MBV90",5121,"HK1003-Rev.0E-3",TT_Task,"55902",-,-,-,0,TK_NotStart,13/09/2022,,07/11/2022,,"SI20MBV4-41 FS,SI20MBV6-40 FS,SI20UMX5B46 FS,SI20MBV6-80 FS","SI20MBV4-41,SI20MBV6-40,SI20UMX5B46,SI20MBV6-80","SI20MBV7-25 FF,SI20MBV8-15 FS,SI20-6-16# FF,SI20-6-16# SS","SI20MBV7-25,SI20MBV8-15,SI20-6-16#,SI20-6-16#",110,,118,,25,,27,,81,1544,"HK1003 -Blackpoint D2 - Rev.0E DD30092021"
1-4044,SI20MBV7-25,"ELECTRICAL ERECTION LUBE OIL TRANSFER  PIPING MBV90",5121,"HK1003-Rev.0E-3",TT_Task,"55902",-,-,-,0,TK_NotStart,25/10/2022,,21/11/2022,,"SI20MBV6-85 FF","SI20MBV6-85","SI20MBV8-15 FS,SI20BZK7D11# FF,SI20BZK7D11# SS","SI20MBV8-15,SI20BZK7D11#,SI20BZK7D11#",116,,120,,27,,28,,84,1544,"HK1003 -Blackpoint D2 - Rev.0E DD30092021"
1-4045,SI20MBV8-155,"COLD COMMISSIONING LUBE OIL TRANSFER SYSTEM MBV90",5121,"HK1003-Rev.0E-3",TT_Task,"55902",-,-,-,0,TK_NotStart,26/05/2023,,22/06/2023,,"SI20MBV8-15 FS,SI-PM-40 FS,SI20B--8-50 FS,SI20TPM17A8-30 FF,SI20TPM18A8-30 FF","SI20MBV8-15,SI-PM-40,SI20B--8-50,SI20TPM17A8-30,SI20TPM18A8-30","SI20MB-9-15 FS","SI20MB-9-15",146,,150,,34,,35,,97,64,"HK1003 -Blackpoint D2 - Rev.0E DD30092021"
1-4046,SI--SG-2-95,"FINAL EXPLOSION PROTECTION CONCEPT & ESCAPE ROUTE AND FIRE PROTECTION DWGS AVAILABLE",5121,"HK1003-Rev.0E-3",TT_Mile,"55902",-,-,-,100,TK_Complete,04/07/2021,04/07/2021,04/07/2021,04/07/2021,"SI--SG-2-50 FS,SI--SG-2-40 FS,SI--SG-2-97 FS","SI--SG-2-50,SI--SG-2-40,SI--SG-2-97","SI20SGA3-26 FS,SI20SGY3A25 FS,SI20SG-3-25 FS,SI20SGA3-25 FS,SI--SG-2-85 FS,SP20SGJ3-25 FS,SI--SGA3A25 FS","SI20SGA3-26,SI20SGY3A25,SI20SG-3-25,SI20SGA3-25,SI--SG-2-85,SP20SGJ3-25,SI--SGA3A25",48,48,48,48,11,11,11,11,20,,"HK1003 -Blackpoint D2 - Rev.0E DD30092021"
1-4047,SI--SG-2-96,"EXPLOSION PROTECTION CONCEPT FOR CLIENT REVIEW",5121,"HK1003-Rev.0E-3",TT_Task,"55902",-,-,-,100,TK_Complete,20/03/2021,20/03/2021,13/04/2021,13/04/2021,"SI--SG-2-103 FS","SI--SG-2-103","SI--SG-2-97 FS","SI--SG-2-97",33,33,36,36,7,7,8,8,6,,"HK1003 -Blackpoint D2 - Rev.0E DD30092021"
1-4048,SI--SG-2-97,"UPDATED EXPLOSION PROTECTION CONCEPT AFTER ALIGNMENT WITH CLIENT",5121,"HK1003-Rev.0E-3",TT_Task,"55902",-,-,-,100,TK_Complete,14/04/2021,14/04/2021,20/04/2021,20/04/2021,"SI--SG-2-96 FS","SI--SG-2-96","SI--SG-2-95 FS","SI--SG-2-95",36,36,37,37,8,8,8,8,8,,"HK1003 -Blackpoint D2 - Rev.0E DD30092021"
1-4049,SI--SG-2-102,"PREPARATION OF FIRE PROTECTION CONCEPT FOR SUBMISSION TO BD",5121,"HK1003-Rev.0E-3",TT_Task,"55902",-,-,-,100,TK_Complete,15/01/2021,15/01/2021,04/02/2021,04/02/2021,"SI--SG-2-30 FS,SI-----1-05 FS","SI--SG-2-30,SI-----1-05","SI--SG-2-104 FS","SI--SG-2-104",23,23,26,26,5,5,6,6,2,,"HK1003 -Blackpoint D2 - Rev.0E DD30092021"
1-4050,SI--SG-2-103,"PREPARATION OF EXPLOSION PROTECTION CONCEPT FOR SUBMISSION TO BD",5121,"HK1003-Rev.0E-3",TT_Task,"55902",-,-,-,100,TK_Complete,15/01/2021,15/01/2021,19/03/2021,19/03/2021,"SI--SG-2-30 FS,SI-----1-05 FS","SI--SG-2-30,SI-----1-05","SI--SG-2-96 FS","SI--SG-2-96",23,23,32,32,5,5,7,7,2,,"HK1003 -Blackpoint D2 - Rev.0E DD30092021"
1-4051,SI--SG-2-104,"BD- SUBMISSON & APPROVAL - FIRE PROTECTION CONCEPT",5121,"HK1003-Rev.0E-3",TT_Task,"55902",-,-,-,100,TK_Complete,05/02/2021,05/02/2021,05/04/2021,05/04/2021,"SI--SG-2-102 FS","SI--SG-2-102","SI--SG-2-106 FS","SI--SG-2-106",26,26,35,35,6,6,8,8,4,,"HK1003 -Blackpoint D2 - Rev.0E DD30092021"
1-4052,SI--SG-2-106,"UPDATE OF FIRE PROTECTION CONCEPT AFTER BD ALIGNMENT",5121,"HK1003-Rev.0E-3",TT_Task,"55902",-,-,-,100,TK_Complete,06/04/2021,06/04/2021,19/04/2021,19/04/2021,"SI--SG-2-104 FS","SI--SG-2-104","SI--SG-2-90 FS","SI--SG-2-90",35,35,37,37,8,8,8,8,7,,"HK1003 -Blackpoint D2 - Rev.0E DD30092021"
1-4053,SI20BAT3-81,"(OTD-OS) ON SITE MAIN TRANSFORMERS 20BAT",5121,"HK1003-Rev.0E-3",TT_FinMile,"55902",-,-,-,0,TK_NotStart,12/08/2022,,12/08/2022,,"SI20BAT4-25 FS,SI-P222-102 FS,SI-P222-103 FS","SI20BAT4-25,SI-P222-102,SI-P222-103","SI20BAT4-10 FS","SI20BAT4-10",105,,105,,24,,24,,77,152,"HK1003 -Blackpoint D2 - Rev.0E DD30092021"
1-4054,SI20BAT4B11,"LOGISTICS AND CUSTOMS PREPARATION TRANSFORMER OIL FOR 20BAT",5121,"HK1003-Rev.0E-3",TT_Task,"55902",-,-,-,0,TK_NotStart,06/07/2022,,02/08/2022,,"SI20BAT3B71 FS","SI20BAT3B71","SI20BAT3-82 FS","SI20BAT3-82",100,,104,,23,,24,,72,440,"HK1003 -Blackpoint D2 - Rev.0E DD30092021"
1-4055,SI20BAT3B71,"TIMES OF COMPLETION (FINAL DATA IN KANLOG) TRANSFORMER OIL FOR 20BAT",5121,"HK1003-Rev.0E-3",TT_FinMile,"55902",-,-,-,0,TK_NotStart,05/07/2022,,05/07/2022,,"SI20BAT2-85 FS","SI20BAT2-85","SI20BAT4B11 FS","SI20BAT4B11",100,,100,,23,,23,,72,440,"HK1003 -Blackpoint D2 - Rev.0E DD30092021"
1-4056,SI20BAT3-82,"(RFS) READY FOR SHIPMENT TRANSFORMER OIL FOR 20BAT",5121,"HK1003-Rev.0E-3",TT_FinMile,"55902",-,-,-,0,TK_NotStart,02/08/2022,,02/08/2022,,"SI20BAT4B11 FS","SI20BAT4B11","SI20BAT4-26 FS","SI20BAT4-26",104,,104,,24,,24,,76,440,"HK1003 -Blackpoint D2 - Rev.0E DD30092021"
1-4057,SI20BAT4-26,"TRANSPORT TRANSFORMER OIL FOR 20BAT",5121,"HK1003-Rev.0E-3",TT_Task,"55902",-,-,-,0,TK_NotStart,03/08/2022,,01/09/2022,,"SI20BAT3-82 FS","SI20BAT3-82","SI20BAT3-83 FS","SI20BAT3-83",104,,108,,24,,25,,76,440,"HK1003 -Blackpoint D2 - Rev.0E DD30092021"
1-4058,SI20BAT3-83,"(OTD-OS) ON SITE TRANSFORMER OIL FOR 20BAT",5121,"HK1003-Rev.0E-3",TT_FinMile,"55902",-,-,-,0,TK_NotStart,01/09/2022,,01/09/2022,,"SI20BAT4-26 FS","SI20BAT4-26","SI20BAT7-17 FS","SI20BAT7-17",108,,108,,25,,25,,80,440,"HK1003 -Blackpoint D2 - Rev.0E DD30092021"
1-4059,SI20BAT7-16,"TRANSFORMER READY FOR OIL FILLING 20BAT",5121,"HK1003-Rev.0E-3",TT_Mile,"55902",-,-,-,0,TK_NotStart,02/09/2022,,02/09/2022,,"SI20BAT7-15 SS","SI20BAT7-15","SI20BAT7-17 FS","SI20BAT7-17",108,,108,,25,,25,,80,440,"HK1003 -Blackpoint D2 - Rev.0E DD30092021"
1-4060,SI20BAT7-17,"OIL FILLING GENERATOR TRANSFORMER 20BAT",5121,"HK1003-Rev.0E-3",TT_Task,"55902",-,-,-,0,TK_NotStart,02/09/2022,,08/09/2022,,"SI20BAT3-83 FS,SI20BAT7-16 FS,SI20GM-7E15 FS,SI20GM-7-15 FS","SI20BAT3-83,SI20BAT7-16,SI20GM-7E15,SI20GM-7-15","SI20BAT8-25 FS,SI20BAA7-15 FF,SI--SGM6-15 FS","SI20BAT8-25,SI20BAA7-15,SI--SGM6-15",108,,109,,25,,25,,80,440,"HK1003 -Blackpoint D2 - Rev.0E DD30092021"
1-4061,SI--5552-91,"KICK OFF MEETING STEELWORK & CLADDING",5121,"HK1003-Rev.0E-3",TT_Mile,"55902",-,-,-,100,TK_Complete,28/05/2021,28/05/2021,28/05/2021,28/05/2021,"SI--5552-89 FS","SI--5552-89","SI20UBX3C25 FS,SI20UMC3B25 FS,SI20UBA3B25 FS","SI20UBX3C25,SI20UMC3B25,SI20UBA3B25",42,42,42,42,10,10,10,10,14,,"HK1003 -Blackpoint D2 - Rev.0E DD30092021"
1-4062,SI--5552-89,"PREPARATION KICK OFF  STEELWORK & CLADDING",5121,"HK1003-Rev.0E-3",TT_Task,"55902",-,-,-,100,TK_Complete,14/05/2021,14/05/2021,27/05/2021,27/05/2021,"SI--5552-90 FS","SI--5552-90","SI--5552-91 FS","SI--5552-91",40,40,42,42,9,9,9,9,12,,"HK1003 -Blackpoint D2 - Rev.0E DD30092021"
1-4063,SI--5552-90,"CONTRACT INTO FORCE  STEELWORK & CLADDING",5121,"HK1003-Rev.0E-3",TT_Mile,"55902",-,-,-,100,TK_Complete,14/05/2021,14/05/2021,14/05/2021,14/05/2021,"SI--5552-87 FS","SI--5552-87","SI--5552-89 FS,SI20UBX3C25 FS,SI20UMC3B25 FS,SI20UBA3B25 FS","SI--5552-89,SI20UBX3C25,SI20UMC3B25,SI20UBA3B25",40,40,40,40,9,9,9,9,12,,"HK1003 -Blackpoint D2 - Rev.0E DD30092021"
1-4064,SI--5552-87,"QUOTATION STAGE STEELWORK & CLADDING",5121,"HK1003-Rev.0E-3",TT_Task,"55902",-,-,-,100,TK_Complete,29/01/2021,29/01/2021,13/05/2021,13/05/2021,"SI-----1-05 FS","SI-----1-05","SI--5552-90 FS","SI--5552-90",25,25,40,40,6,6,9,9,3,,"HK1003 -Blackpoint D2 - Rev.0E DD30092021"
1-4065,SI--5552-93,"PREPARATION RFQ PAB PIPING SUPPLY",5121,"HK1003-Rev.0E-3",TT_Task,"55902",-,-,-,100,TK_Complete,15/01/2021,15/01/2021,29/01/2021,29/01/2021,"SI-----1-05 FS","SI-----1-05","SI--5552-95 FS,SI--5552-92 FS","SI--5552-95,SI--5552-92",23,23,25,25,5,5,6,6,2,,"HK1003 -Blackpoint D2 - Rev.0E DD30092021"
1-4066,SI--5552-95,"CONTRACT INTO FORCE PAB PIPING SUPPLY",5121,"HK1003-Rev.0E-3",TT_Mile,"55902",-,-,-,100,TK_Complete,15/03/2021,15/03/2021,15/03/2021,15/03/2021,"SI--5552-93 FS,SI--5552-92 FS","SI--5552-93,SI--5552-92","SI20PAB3-20 FS","SI20PAB3-20",32,32,32,32,7,7,7,7,6,,"HK1003 -Blackpoint D2 - Rev.0E DD30092021"
1-4067,SI--5552-92,"QUOTATION STAGE PAB PIPING SUPPLY",5121,"HK1003-Rev.0E-3",TT_Task,"55902",-,-,-,100,TK_Complete,30/01/2021,30/01/2021,14/03/2021,14/03/2021,"SI--5552-93 FS","SI--5552-93","SI--5552-95 FS","SI--5552-95",26,26,32,32,6,6,7,7,3,,"HK1003 -Blackpoint D2 - Rev.0E DD30092021"
1-4068,SI--5552-102,"PREPARATION KICK OFF SITE INFRASTRUCTURE",5121,"HK1003-Rev.0E-3",TT_Task,"55902",-,-,-,100,TK_Complete,14/04/2021,14/04/2021,27/04/2021,27/04/2021,"SI--5552-103 FS","SI--5552-103","SI--3335-66 FS","SI--3335-66",36,36,38,38,8,8,8,8,8,,"HK1003 -Blackpoint D2 - Rev.0E DD30092021"
1-4069,SI--5552-103,"CONTRACT INTO FORCE SITE INFRASTRUCTURE",5121,"HK1003-Rev.0E-3",TT_Mile,"55902",-,-,-,100,TK_Complete,14/04/2021,14/04/2021,14/04/2021,14/04/2021,"SI--5552-101 FS","SI--5552-101","SI--5552-102 FS,SI--5552-104 FS,SI--3335-72 FS,SI--3335-74 FS,SI--3335-73 FS,SI--3335-75 FS,SI--3335-76 FS,SI--3335-77 FS,SI--3335-78 FS,SI--3335-79 FS,SI--3335-80 FS","SI--5552-102,SI--5552-104,SI--3335-72,SI--3335-74,SI--3335-73,SI--3335-75,SI--3335-76,SI--3335-77,SI--3335-78,SI--3335-79,SI--3335-80",36,36,36,36,8,8,8,8,8,,"HK1003 -Blackpoint D2 - Rev.0E DD30092021"
1-4070,SI--5552-101,"QUOTATION STAGE SITE INFRASTRUCTURE",5121,"HK1003-Rev.0E-3",TT_Task,"55902",-,-,-,100,TK_Complete,29/01/2021,29/01/2021,13/04/2021,13/04/2021,"SI-----1-05 FS","SI-----1-05","SI--5552-103 FS","SI--5552-103",25,25,36,36,6,6,8,8,3,,"HK1003 -Blackpoint D2 - Rev.0E DD30092021"
1-4071,SI20UZx-42,"BASIC BUILDING DESIGN TEMPORARY BUILDINGS 20UZx",5121,"HK1003-Rev.0E-3",TT_Task,"55902",-,-,-,100,TK_Complete,19/03/2021,19/03/2021,20/04/2021,20/04/2021,"SI-----1-05 FS","SI-----1-05","SI20UZx2-43 FS,SI20UZx2-46 FS","SI20UZx2-43,SI20UZx2-46",32,32,37,37,7,7,8,8,6,,"HK1003 -Blackpoint D2 - Rev.0E DD30092021"
1-4072,SI20UZx5-49,"(RFE) TEMPORARY BUILDINGS 20UZx",5121,"HK1003-Rev.0E-3",TT_FinMile,"55902",-,-,-,0,TK_NotStart,28/11/2021,,28/11/2021,,"SI20UZx5-53 FS,SI20UZx5-52 FS,SI20UZx5-51 FS","SI20UZx5-53,SI20UZx5-52,SI20UZx5-51","SI20UZx5-47# FF,SI--PEM6-20& FS","SI20UZx5-47#,SI--PEM6-20&",69,,69,,16,,16,,40,1624,"HK1003 -Blackpoint D2 - Rev.0E DD30092021"
1-4073,SI20UZx5-46,"FABRICATION TEMPORARY BUILDINGS 20UZx",5121,"HK1003-Rev.0E-3",TT_Task,"55902",-,-,-,63,TK_Active,20/06/2021,20/06/2021,28/11/2021,,"SI20UZx2-47 FS,SI20UZx2-46 FS,SI20UZx2-48 FS","SI20UZx2-47,SI20UZx2-46,SI20UZx2-48","SI20UZx5-51 SS,SI20UZx5-52 FF,SI20UZx5-53 FS","SI20UZx5-51,SI20UZx5-52,SI20UZx5-53",46,46,69,,10,10,16,,18,1624,"HK1003 -Blackpoint D2 - Rev.0E DD30092021"
1-4074,SI20UZx2-43,"DETAIL DESIGN TEMPORARY BUILDINGS (by subcontractor) 20UZx",5121,"HK1003-Rev.0E-3",TT_Task,"55902",-,-,-,100,TK_Complete,14/05/2021,14/05/2021,30/05/2021,30/05/2021,"SI20UZx-42 FS,SI--5552-85 FS","SI20UZx-42,SI--5552-85","SI20UZx2-48 FS","SI20UZx2-48",40,40,43,43,9,9,10,10,12,,"HK1003 -Blackpoint D2 - Rev.0E DD30092021"
1-4075,SI20UZx2-46,"BD - SUBMISSION & APPROVAL - TEMPORARY BUILDINGS 20UZx",5121,"HK1003-Rev.0E-3",TT_Task,"55902",-,-,-,100,TK_Complete,21/04/2021,21/04/2021,19/06/2021,19/06/2021,"SI20UZx-42 FS","SI20UZx-42","SI20UZx2-47 FS,SI20UZx5-46 FS","SI20UZx2-47,SI20UZx5-46",37,37,46,46,8,8,10,10,9,,"HK1003 -Blackpoint D2 - Rev.0E DD30092021"
1-4076,SI20UZx2-47,"BD - CONSENT LETTER - TEMPORARY BUILDINGS 20UZx",5121,"HK1003-Rev.0E-3",TT_Task,"55902",-,-,-,100,TK_Complete,20/06/2021,20/06/2021,17/07/2021,17/07/2021,"SI20UZx2-46 FS","SI20UZx2-46","SI20UZx5-46 FS","SI20UZx5-46",46,46,50,50,10,10,11,11,18,,"HK1003 -Blackpoint D2 - Rev.0E DD30092021"
1-4077,SI20HA-6A49,"INSULATION HRSG / PIPES HRSG20 AFTER CHEMICAL CLEANING",5121,"HK1003-Rev.0E-3",TT_Task,"55902",-,-,-,0,TK_NotStart,03/06/2023,,30/06/2023,,"SI20--P6-75 FS","SI20--P6-75","SI20MB-9-15 FS","SI20MB-9-15",148,,151,,34,,35,,98,0,"HK1003 -Blackpoint D2 - Rev.0E DD30092021"
1-4078,SP20MA-3-84,"MANUFACTURING MAL VALVES FOR SKIDDER",5121,"HK1003-Rev.0E-3",TT_Task,"55902",-,-,-,60,TK_Active,26/05/2021,26/05/2021,21/12/2021,,"SP20MA-2-81 FS","SP20MA-2-81","SI20MA-6A61 FS,SI20MA-6A61 FF,SP20MA-3-90 SS","SI20MA-6A61,SI20MA-6A61,SP20MA-3-90",42,42,72,,9,9,16,,14,336,"HK1003 -Blackpoint D2 - Rev.0E DD30092021"
1-4079,SI20MKF6A16,"PIPING ERECTION GENERATOR STATOR WATER SYSTEM 20MKF",5121,"HK1003-Rev.0E-3",TT_Task,"55902",-,-,-,0,TK_NotStart,04/11/2022,,19/01/2023,,"SI20MKF6-16 FS,SI20MKG6A16 SS","SI20MKF6-16,SI20MKG6A16","SI20MKF8-11 FS","SI20MKF8-11",117,,128,,27,,30,,84,904,"HK1003 -Blackpoint D2 - Rev.0E DD30092021"
1-4080,SI20MKF6-16,"ERECTION GENERATOR STATOR WATER SYSTEM 20MKF",5121,"HK1003-Rev.0E-3",TT_Task,"55902",-,-,-,0,TK_NotStart,25/09/2022,,08/10/2022,,"SI20MKG6-15 FS","SI20MKG6-15","SI20MKF6A16 FS,SI20MKF8-11 FS","SI20MKF6A16,SI20MKF8-11",112,,114,,26,,26,,82,1112,"HK1003 -Blackpoint D2 - Rev.0E DD30092021"
1-4081,SI20BZP7-26,"PRECONDITION FOR CABLE TRAY ACTIVITIES AVAILABLE",5121,"HK1003-Rev.0E-3",TT_Mile,"55902",-,-,-,0,TK_NotStart,20/04/2022,,20/04/2022,,"SI--BZP4B40 FS,SI20LDK4M40 FS,SI20UQZ5-161 FS","SI--BZP4B40,SI20LDK4M40,SI20UQZ5-161","SI20BZP7-140 FS,SI20BZP7-100 FS,SI20BZP7-110 FS,SI20BZP7-20 FS,SI20BZP7-150 FS,SI20BZP7-75 FS,SI20BZP7-171 FS,SI20BZP7-60 FS,SI20BZP7-160 FS,SI20BZP7-50 FS,SI20BZP7-85 FS,SI20BZP7-45 FS,SI20BZP7-95 FS,SI20BZP7-10 FS,SI20BZP7-80 FS,SI20BZP7-135 FS,SI20BZP7-15 FS,SI20BZP7-165 FS,SI20BZP7-145 FS,SI20BZP7-155 FS,SI20BZK7-130 FS,SI20BZP7-125 FS,SI20BZP7-90 FS,SI20BZP7-120 FS,SI20BZP7-35 FS,SI20BZP7-5 FS,SI20BZP7-40 FS,SI20BZP7-105 FS,SI20BZP7-115 FS,SI20BZP7-55 FS,SI20BZP7-65 FS,SI20BZP7-70 FS,SI20BZP7-170 FS,SI20BZP7-182 FS","SI20BZP7-140,SI20BZP7-100,SI20BZP7-110,SI20BZP7-20,SI20BZP7-150,SI20BZP7-75,SI20BZP7-171,SI20BZP7-60,SI20BZP7-160,SI20BZP7-50,SI20BZP7-85,SI20BZP7-45,SI20BZP7-95,SI20BZP7-10,SI20BZP7-80,SI20BZP7-135,SI20BZP7-15,SI20BZP7-165,SI20BZP7-145,SI20BZP7-155,SI20BZK7-130,SI20BZP7-125,SI20BZP7-90,SI20BZP7-120,SI20BZP7-35,SI20BZP7-5,SI20BZP7-40,SI20BZP7-105,SI20BZP7-115,SI20BZP7-55,SI20BZP7-65,SI20BZP7-70,SI20BZP7-170,SI20BZP7-182",89,,89,,20,,20,,58,144,"HK1003 -Blackpoint D2 - Rev.0E DD30092021"
1-4082,SI20MB-6-58,"FINAL INSPECTIONS & CLOSING OF OPEN ITEMS BEFORE COMMISSIONING GT20 MB",5121,"HK1003-Rev.0E-3",TT_Task,"55902",-,-,-,0,TK_NotStart,17/03/2023,,27/04/2023,,"SI20MBV6-55 FS","SI20MBV6-55","SI20MBA8-10 FS","SI20MBA8-10",136,,142,,31,,33,,93,8,"HK1003 -Blackpoint D2 - Rev.0E DD30092021"
1-4083,SI20MA-6-66,"FINAL INSPECTIONS & CLOSING OF OPEN ITEMS BEFORE COMMISSIONING MA",5121,"HK1003-Rev.0E-3",TT_Task,"55902",-,-,-,0,TK_NotStart,22/03/2023,,17/04/2023,,"SI20MAD6-71 FS,SI20MA-6D45 FS","SI20MAD6-71,SI20MA-6D45","SI20MAD8-25 FS,SI20MAN8-25 FS,SI20QFB8-25 FS,SI20MAL8-25 FS,SI20MAJ8-25 FS,SI20MAW8-25 FS,SI20MAX8-25 FS,SI20MA-8-25 FS","SI20MAD8-25,SI20MAN8-25,SI20QFB8-25,SI20MAL8-25,SI20MAJ8-25,SI20MAW8-25,SI20MAX8-25,SI20MA-8-25",137,,141,,32,,32,,93,32,"HK1003 -Blackpoint D2 - Rev.0E DD30092021"
1-4084,SI20UBA7-29,"INSTALLATION ELECTRICAL MODULES 20UBA7110/7210/7410",5121,"HK1003-Rev.0E-3",TT_Task,"55902",-,-,-,0,TK_NotStart,13/07/2022,,02/08/2022,,"SI20UBA7-28 FS,SI20UBA7-17 SS","SI20UBA7-28,SI20UBA7-17","SI20UBA7-30 FF,SI20UBA7-37# FF,SI20UBA5B61 SS,SI20UBA7-32 SS","SI20UBA7-30,SI20UBA7-37#,SI20UBA5B61,SI20UBA7-32",101,,104,,23,,24,,73,592,"HK1003 -Blackpoint D2 - Rev.0E DD30092021"
1-4085,SI20UBA7-30,"CABLING INTERNAL 20UBA7110/7210/7410 - PART OF ELECTRICAL MODULES ASSEMBLY",5121,"HK1003-Rev.0E-3",TT_Task,"55902",-,-,-,0,TK_NotStart,19/08/2022,,01/09/2022,,"SI20UBA7-29 FF,SI20UBA7-28 FS,SI20UBA7-104 SS,SI20UBA5B47 FS,SI20BZK7-25 FS","SI20UBA7-29,SI20UBA7-28,SI20UBA7-104,SI20UBA5B47,SI20BZK7-25","SI20UBA7-33 SS,SI20BZK7D10# FF,SI20BZK7D10# SS,SI20BZK7B41 FS,SI20BZK7B48 FS","SI20UBA7-33,SI20BZK7D10#,SI20BZK7D10#,SI20BZK7B41,SI20BZK7B48",106,,108,,24,,25,,78,464,"HK1003 -Blackpoint D2 - Rev.0E DD30092021"
1-4086,SI20UBA7-28,"PLACING 20UBA7110/7210/7410",5121,"HK1003-Rev.0E-3",TT_Task,"55902",-,-,-,0,TK_NotStart,06/07/2022,,06/07/2022,,"SI20UBA7-102 FS,SI20UBA4B46 FS,SI20UBF620 FS","SI20UBA7-102,SI20UBA4B46,SI20UBF620","SI20UBA7-29 FS,SI20UBA7-30 FS,SI20UBA7-31 FS,SI20UBA7-37# SS","SI20UBA7-29,SI20UBA7-30,SI20UBA7-31,SI20UBA7-37#",100,,100,,23,,23,,72,640,"HK1003 -Blackpoint D2 - Rev.0E DD30092021"
1-4087,SI20UBA7-32,"INSTALLATION ELECTRICAL MODULES 20UBA7310/30",5121,"HK1003-Rev.0E-3",TT_Task,"55902",-,-,-,0,TK_NotStart,20/07/2022,,09/08/2022,,"SI20UBA7-31 FS,SI20UBA7-29 SS","SI20UBA7-31,SI20UBA7-29","SI20UBA7-33 FF,SI20UBA7-37# FF,SI20UBA5B61 SS,SI20UBA7-35 SS","SI20UBA7-33,SI20UBA7-37#,SI20UBA5B61,SI20UBA7-35",102,,105,,23,,24,,74,592,"HK1003 -Blackpoint D2 - Rev.0E DD30092021"
1-4088,SI20UBA7-33,"CABLING INTERNAL 20UBA7310/30 - PART OF ELECTRICAL MODULES ASSEMBLY",5121,"HK1003-Rev.0E-3",TT_Task,"55902",-,-,-,0,TK_NotStart,26/08/2022,,08/09/2022,,"SI20UBA7-32 FF,SI20UBA7-31 FS,SI20UBA7-30 SS,SI20UBA5B47 FS,SI20BZK7-25 FS","SI20UBA7-32,SI20UBA7-31,SI20UBA7-30,SI20UBA5B47,SI20BZK7-25","SI20UBA7-36 SS,SI20BZK7D10# FF,SI20BZK7D10# SS,SI20BZK7B41 FS,SI20BZK7B48 FS","SI20UBA7-36,SI20BZK7D10#,SI20BZK7D10#,SI20BZK7B41,SI20BZK7B48",107,,109,,25,,25,,79,464,"HK1003 -Blackpoint D2 - Rev.0E DD30092021"
1-4089,SI20UBA7-31,"PLACING 20UBA7310/30",5121,"HK1003-Rev.0E-3",TT_Task,"55902",-,-,-,0,TK_NotStart,07/07/2022,,07/07/2022,,"SI20UBA7-28 FS,SI20UBA4B47 FS,SI20UBF620 FS","SI20UBA7-28,SI20UBA4B47,SI20UBF620","SI20UBA7-32 FS,SI20UBA7-33 FS,SI20UBA7-34 FS,SI20UBA7-37# SS,SI20UBA7-106 FS","SI20UBA7-32,SI20UBA7-33,SI20UBA7-34,SI20UBA7-37#,SI20UBA7-106",100,,100,,23,,23,,73,688,"HK1003 -Blackpoint D2 - Rev.0E DD30092021"
1-4090,SI20UBA7-35,"INSTALLATION ELECTRICAL MODULES 20UBA7610/20",5121,"HK1003-Rev.0E-3",TT_Task,"55902",-,-,-,0,TK_NotStart,27/07/2022,,16/08/2022,,"SI20UBA7-34 FS,SI20UBA7-32 SS","SI20UBA7-34,SI20UBA7-32","SI20UBA7-36 FF,SI20UBA7-37# FF,SI20UBA5B61 SS,SI20BZK7D10# FS","SI20UBA7-36,SI20UBA7-37#,SI20UBA5B61,SI20BZK7D10#",103,,106,,24,,24,,75,592,"HK1003 -Blackpoint D2 - Rev.0E DD30092021"
1-4091,SI20UBA7-36,"CABLING INTERNAL 20UBA7610/20 - PART OF ELECTRICAL MODULES ASSEMBLY",5121,"HK1003-Rev.0E-3",TT_Task,"55902",-,-,-,0,TK_NotStart,02/09/2022,,22/09/2022,,"SI20UBA7-35 FF,SI20UBA7-34 FS,SI20UBA7-33 SS,SI20UBA5B47 FS,SI20BZK7-25 FS","SI20UBA7-35,SI20UBA7-34,SI20UBA7-33,SI20UBA5B47,SI20BZK7-25","SI20BZK7A28 FS,SI20BZK7D10# FF,SI20BZK7D10# SS,SI20BZK7B41 FS,SI20BZK7B48 FS","SI20BZK7A28,SI20BZK7D10#,SI20BZK7D10#,SI20BZK7B41,SI20BZK7B48",108,,111,,25,,26,,80,464,"HK1003 -Blackpoint D2 - Rev.0E DD30092021"
1-4092,SI20UBA7-34,"PLACING 20UBA7610/20",5121,"HK1003-Rev.0E-3",TT_Task,"55902",-,-,-,0,TK_NotStart,08/07/2022,,08/07/2022,,"SI20UBA7-31 FS,SI20UBA4B48 FS,SI20UBF620 FS","SI20UBA7-31,SI20UBA4B48,SI20UBF620","SI20UBA7-35 FS,SI20UBA7-36 FS,SI20BFT7-15 FS,SI20BFT7-16 FS,SI20UBA7-37# SS,SI20UBA7C-10 FS","SI20UBA7-35,SI20UBA7-36,SI20BFT7-15,SI20BFT7-16,SI20UBA7-37#,SI20UBA7C-10",100,,100,,23,,23,,73,736,"HK1003 -Blackpoint D2 - Rev.0E DD30092021"
1-4093,SI20BZP7-174,"ERECTION CABLE TRAYS ON 20UEY04/05",5121,"HK1003-Rev.0E-3",TT_Task,"55902",-,-,-,0,TK_NotStart,18/04/2022,,27/04/2022,,"SI20UEY5-45 FS,SI--PEE7-20 FS,SI20BZP7-193 FS","SI20UEY5-45,SI--PEE7-20,SI20BZP7-193","SI20BZP7-181 FS,SI20BZK7B27 FS,SI20EKG6H16 FS,SI20BZK7-187 FS,SI20MAA7A15 FS,SI20MAG7A15 FS,SI20MAJ7A15 FS,SI20MAL7A15 FS,SI20MAN7H15 FS,SI20MAV7H15 FS,SI20MAW7H15 FS,SI20MAX7H15 FS,SI20MB-7H15 FS,SI20MB-7J15 FS,SI20MBQ7H15 FS,SI20LBA7H15 FS,SI20LBA7H16 FS,SI20LBA7J15 FS,SI20LBA7J16 FS,SI20LBB7J15 FS,SI20LBB7J17 FS,SI20LBG7A17 FS,SI20LBG7A15 FS,SI20LAB7H15 FS,SI20LCA7A15 FS,SI20LCL7A15 FS,SI20LCW7H15 FS,SI20LDK7H16 FS,SI20EK-7H15 FS,SI20EK-7I15 FS,SI20PAB7A15 FS,SI20PAH7H15 FS,SI20PAR7A16 FS,SI20PCB7H15 FS,SI20PGB7H15 FS,SI20GHC7H15 FS,SI20GHC7H17 FS,SI20GHD7H15 FS,SI20QFB7H15 FS,SI20QU-7H15 FS,SI20BZK7B48 FS,SI20UEN615 FS","SI20BZP7-181,SI20BZK7B27,SI20EKG6H16,SI20BZK7-187,SI20MAA7A15,SI20MAG7A15,SI20MAJ7A15,SI20MAL7A15,SI20MAN7H15,SI20MAV7H15,SI20MAW7H15,SI20MAX7H15,SI20MB-7H15,SI20MB-7J15,SI20MBQ7H15,SI20LBA7H15,SI20LBA7H16,SI20LBA7J15,SI20LBA7J16,SI20LBB7J15,SI20LBB7J17,SI20LBG7A17,SI20LBG7A15,SI20LAB7H15,SI20LCA7A15,SI20LCL7A15,SI20LCW7H15,SI20LDK7H16,SI20EK-7H15,SI20EK-7I15,SI20PAB7A15,SI20PAH7H15,SI20PAR7A16,SI20PCB7H15,SI20PGB7H15,SI20GHC7H15,SI20GHC7H17,SI20GHD7H15,SI20QFB7H15,SI20QU-7H15,SI20BZK7B48,SI20UEN615",89,,90,,20,,21,,58,1136,"HK1003 -Blackpoint D2 - Rev.0E DD30092021"
1-4094,SI20BFT7-16,"PLACING LV-TRANSFORMERS 20BFT01/02",5121,"HK1003-Rev.0E-3",TT_Task,"55902",-,-,-,0,TK_NotStart,25/07/2022,,25/07/2022,,"SI--BFT2-05 FS,SI20BFT4-40 FS,SI20UBD5-45 FS,SI--2227-68 FS,SI20UBA7-102 FS,SI20UBA7-34 FS","SI--BFT2-05,SI20BFT4-40,SI20UBD5-45,SI--2227-68,SI20UBA7-102,SI20UBA7-34","SI20BFT7-15 FS","SI20BFT7-15",103,,103,,24,,24,,75,816,"HK1003 -Blackpoint D2 - Rev.0E DD30092021"
1-4095,SI-----8-8&,"MV AVAILABLE (BACK ENERGISING 400kV)",5121,"HK1003-Rev.0E-3",TT_FinMile,"55902",-,-,-,0,TK_NotStart,10/04/2023,,10/04/2023,,"SI-----1-05 FS","SI-----1-05","SI20B--8-50 FS","SI20B--8-50",140,,140,,32,,32,,94,16,"HK1003 -Blackpoint D2 - Rev.0E DD30092021"
1-4096,SI20CFE8-36,"COMMISSIONING CONTINIOUS EMISSION MONITORING SYSTEM (1) HRSG20",5121,"HK1003-Rev.0E-3",TT_Task,"55902",-,-,-,0,TK_NotStart,16/06/2023,,22/06/2023,,"SI20CFE8-13 FS,SI-PM-40 FS,SI20TPI17A8-30 FS,SI20TPI19I8-30 FS,SI20TPI19II8-30 FS,SI20HSJ8-26 FF,SI20HA-8-25 FS","SI20CFE8-13,SI-PM-40,SI20TPI17A8-30,SI20TPI19I8-30,SI20TPI19II8-30,SI20HSJ8-26,SI20HA-8-25","SI20MB-9-15 FS,SI20CFE8-35 FS","SI20MB-9-15,SI20CFE8-35",149,,150,,34,,35,,98,64,"HK1003 -Blackpoint D2 - Rev.0E DD30092021"
1-4097,SI20MAG6-63,"ASSEMBLY AND WELDING OF CONDENSATE DRAIN TANK MAG",5121,"HK1003-Rev.0E-3",TT_Task,"55902",-,-,-,0,TK_NotStart,26/05/2022,,29/05/2022,,"SI20MAG6-06 FS","SI20MAG6-06","SI20MAG6-10 FS,SI20MAG6-14 FS","SI20MAG6-10,SI20MAG6-14",94,,95,,22,,22,,66,144,"HK1003 -Blackpoint D2 - Rev.0E DD30092021"
1-4098,SI20MAG6-65,"CONDENSER READY FOR PRE_ASSEMBLING MAG/LDK/LCA-PIPING",5121,"HK1003-Rev.0E-3",TT_Mile,"55902",-,-,-,0,TK_NotStart,17/06/2022,,17/06/2022,,"SI20MAG6-18 FS","SI20MAG6-18","SI20LCA6A15 FS,SI20LCA6A46 FS,SI20MAG6A15 FS,SI20LDK6A15 FS,SI20LCE6A15 FS","SI20LCA6A15,SI20LCA6A46,SI20MAG6A15,SI20LDK6A15,SI20LCE6A15",97,,97,,22,,22,,70,568,"HK1003 -Blackpoint D2 - Rev.0E DD30092021"
1-4099,SI20BZK3-81,"MANUFACTURING / SHOP TEST I&C CABLES BZK (LOT 1)",5121,"HK1003-Rev.0E-3",TT_Task,"55902",-,-,-,0,TK_NotStart,04/11/2021,,20/04/2022,,"SI--BZK2-93 FS,SI--2222-30 FS","SI--BZK2-93,SI--2222-30","SI20BZK3-82 FS,SI--BZK2-06 FS","SI20BZK3-82,SI--BZK2-06",65,,89,,15,,20,,37,464,"HK1003 -Blackpoint D2 - Rev.0E DD30092021"
1-4100,SI20BZK3-83,"(RFS) READY FOR SHIPMENT I&C CABLES BZK (LOT 1)",5121,"HK1003-Rev.0E-3",TT_FinMile,"55902",-,-,-,0,TK_NotStart,18/05/2022,,18/05/2022,,"SI20BZK4-43 FS","SI20BZK4-43","SI20BZK4-44 FS","SI20BZK4-44",93,,93,,21,,21,,65,464,"HK1003 -Blackpoint D2 - Rev.0E DD30092021"
1-4101,SI20BZK4-44,"TRANSPORT I&C CABLES BZK (LOT 1)",5121,"HK1003-Rev.0E-3",TT_Task,"55902",-,-,-,0,TK_NotStart,19/05/2022,,13/07/2022,,"SI20BZK3-83 FS","SI20BZK3-83","SI20BZK4-45 FS,SI--BZK2-06 SS","SI20BZK4-45,SI--BZK2-06",93,,101,,21,,23,,65,464,"HK1003 -Blackpoint D2 - Rev.0E DD30092021"
1-4102,SI20BZK4-45,"(OTD-OS) ON SITE I&C CABLES BZK (LOT 1)",5121,"HK1003-Rev.0E-3",TT_FinMile,"55902",-,-,-,0,TK_NotStart,13/07/2022,,13/07/2022,,"SI20BZK4-44 FS","SI20BZK4-44","SI20BZK4-40 FS","SI20BZK4-40",101,,101,,23,,23,,73,464,"HK1003 -Blackpoint D2 - Rev.0E DD30092021"
1-4103,SI--BZK2-91,"QUOTATION  I&C CABLES BZK",5121,"HK1003-Rev.0E-3",TT_Task,"55902",-,-,-,17,TK_Active,23/09/2021,23/09/2021,03/11/2021,,"SI--BZK2-92 FS","SI--BZK2-92","SI--BZK2-93 FS","SI--BZK2-93",59,59,65,,13,13,15,,30,464,"HK1003 -Blackpoint D2 - Rev.0E DD30092021"
1-4104,SI--BZK2-92,"RFQ I&C CABLES BZK",5121,"HK1003-Rev.0E-3",TT_Mile,"55902",-,-,-,100,TK_Complete,23/09/2021,23/09/2021,23/09/2021,23/09/2021,"SI--BZK2-90 FS","SI--BZK2-90","SI--BZK2-91 FS","SI--BZK2-91",59,59,59,59,13,13,13,13,30,,"HK1003 -Blackpoint D2 - Rev.0E DD30092021"
1-4105,SI--BZK2-93,"CONTRACT INTO FORCE I&C CABLES BZK  (LOT 1)",5121,"HK1003-Rev.0E-3",TT_Mile,"55902",-,-,-,0,TK_NotStart,04/11/2021,,04/11/2021,,"SI--BZK2-91 FS","SI--BZK2-91","SI20BZK3-81 FS","SI20BZK3-81",65,,65,,15,,15,,37,464,"HK1003 -Blackpoint D2 - Rev.0E DD30092021"
1-4106,SI--BZK2-90,"BASIC DESIGN / SPECIFICATION I&C CABLES BZK",5121,"HK1003-Rev.0E-3",TT_Task,"55902",-,-,-,100,TK_Complete,26/08/2021,26/08/2021,22/09/2021,22/09/2021,"SI--C--2C50 FS,SI--C--2C55 FS","SI--C--2C50,SI--C--2C55","SI--BZK2-92 FS","SI--BZK2-92",55,55,59,59,13,13,13,13,27,,"HK1003 -Blackpoint D2 - Rev.0E DD30092021"
1-4107,SI20BZK4-43,"LOGISTICS AND CUSTOMS PREPARATION I&C CABLES BZK (LOT 1)",5121,"HK1003-Rev.0E-3",TT_Task,"55902",-,-,-,0,TK_NotStart,21/04/2022,,18/05/2022,,"SI20BZK3-82 FS","SI20BZK3-82","SI20BZK3-83 FS","SI20BZK3-83",89,,93,,20,,21,,58,464,"HK1003 -Blackpoint D2 - Rev.0E DD30092021"
1-4108,SI20BZK3-82,"TIMES OF COMPLETION (FINAL DATA IN KANLOG) I&C CABLES BZK (LOT 1)",5121,"HK1003-Rev.0E-3",TT_FinMile,"55902",-,-,-,0,TK_NotStart,20/04/2022,,20/04/2022,,"SI20BZK3-81 FS","SI20BZK3-81","SI20BZK4-43 FS","SI20BZK4-43",89,,89,,20,,20,,58,464,"HK1003 -Blackpoint D2 - Rev.0E DD30092021"
1-4109,SI-P2I-12,"LOGISTICS AND CUSTOMS PREPARATION INSULATION FOR ALL SYSTEMS",5121,"HK1003-Rev.0E-3",TT_Task,"55902",-,-,-,0,TK_NotStart,12/05/2022,,08/06/2022,,"SI-P2I-11 FS","SI-P2I-11","SI-P2I-13 FS","SI-P2I-13",92,,96,,21,,22,,64,1440,"HK1003 -Blackpoint D2 - Rev.0E DD30092021"
1-4110,SI-P2I-11,"TIMES OF COMPLETION (FINAL DATA IN KANLOG) INSULATION FOR ALL SYSTEMS",5121,"HK1003-Rev.0E-3",TT_FinMile,"55902",-,-,-,0,TK_NotStart,11/05/2022,,11/05/2022,,"SI-P2I-6 FS","SI-P2I-6","SI-P2I-12 FS","SI-P2I-12",92,,92,,21,,21,,64,1440,"HK1003 -Blackpoint D2 - Rev.0E DD30092021"
1-4111,SI20BZK3-84,"MANUFACTURING / SHOP TEST I&C CABLES BZK (LOT 2)",5121,"HK1003-Rev.0E-3",TT_Task,"55902",-,-,-,0,TK_NotStart,16/02/2022,,02/08/2022,,"SI--BZK2-97 FS,SI--2222-30 FS","SI--BZK2-97,SI--2222-30","SI20BZK3-85 FS","SI20BZK3-85",80,,104,,18,,24,,50,64,"HK1003 -Blackpoint D2 - Rev.0E DD30092021"
1-4112,SI20BZK3-86,"(RFS) READY FOR SHIPMENT I&C CABLES BZK (LOT 2)",5121,"HK1003-Rev.0E-3",TT_FinMile,"55902",-,-,-,0,TK_NotStart,30/08/2022,,30/08/2022,,"SI20BZK4-46 FS","SI20BZK4-46","SI20BZK4-47 FS","SI20BZK4-47",108,,108,,25,,25,,79,64,"HK1003 -Blackpoint D2 - Rev.0E DD30092021"
1-4113,SI20BZK4-47,"TRANSPORT I&C CABLES BZK (LOT 2)",5121,"HK1003-Rev.0E-3",TT_Task,"55902",-,-,-,0,TK_NotStart,31/08/2022,,25/10/2022,,"SI20BZK3-86 FS","SI20BZK3-86","SI20BZK4-48 FS","SI20BZK4-48",108,,116,,25,,27,,80,64,"HK1003 -Blackpoint D2 - Rev.0E DD30092021"
1-4114,SI20BZK4-48,"(OTD-OS) ON SITE I&C CABLES BZK (LOT 2)",5121,"HK1003-Rev.0E-3",TT_FinMile,"55902",-,-,-,0,TK_NotStart,25/10/2022,,25/10/2022,,"SI20BZK4-47 FS","SI20BZK4-47","SI--BZK4-40 FS","SI--BZK4-40",116,,116,,27,,27,,84,64,"HK1003 -Blackpoint D2 - Rev.0E DD30092021"
1-4115,SI--BZK2-97,"CONTRACT INTO FORCE I&C CABLES BZK (LOT 2)",5121,"HK1003-Rev.0E-3",TT_Mile,"55902",-,-,-,0,TK_NotStart,16/02/2022,,16/02/2022,,"SI--BZK2-89 SS","SI--BZK2-89","SI20BZK3-84 FS","SI20BZK3-84",80,,80,,18,,18,,50,64,"HK1003 -Blackpoint D2 - Rev.0E DD30092021"
1-4116,SI20BZK4-46,"LOGISTICS AND CUSTOMS PREPARATION I&C CABLES BZK (LOT 2)",5121,"HK1003-Rev.0E-3",TT_Task,"55902",-,-,-,0,TK_NotStart,03/08/2022,,30/08/2022,,"SI20BZK3-85 FS","SI20BZK3-85","SI20BZK3-86 FS","SI20BZK3-86",104,,108,,24,,25,,76,64,"HK1003 -Blackpoint D2 - Rev.0E DD30092021"
1-4117,SI20BZK3-85,"TIMES OF COMPLETION (FINAL DATA IN KANLOG) I&C CABLES BZK (LOT 2)",5121,"HK1003-Rev.0E-3",TT_FinMile,"55902",-,-,-,0,TK_NotStart,02/08/2022,,02/08/2022,,"SI20BZK3-84 FS","SI20BZK3-84","SI20BZK4-46 FS","SI20BZK4-46",104,,104,,24,,24,,76,64,"HK1003 -Blackpoint D2 - Rev.0E DD30092021"
1-4118,SI20CHY3-26,"MANUFACTURING / SHOP TEST HRSG PROTECTION CABINET",5121,"HK1003-Rev.0E-3",TT_Task,"55902",-,-,-,43,TK_Active,09/09/2021,09/09/2021,27/10/2021,,"SI--CHY2-85 FS,SI20CJ-2-50 FS,SI20CJ-3-20 FS,SP--B--2-60 FS","SI--CHY2-85,SI20CJ-2-50,SI20CJ-3-20,SP--B--2-60","SI20CHY4-11 FS","SI20CHY4-11",57,57,64,,13,13,15,,29,1184,"HK1003 -Blackpoint D2 - Rev.0E DD30092021"
1-4119,SI20CHY4-11,"TRANSPORT TO TESTING FACILITY HRSG PROTECTION CABINET  (PRECOMMISSIONING TEST )",5121,"HK1003-Rev.0E-3",TT_Task,"55902",-,-,-,0,TK_NotStart,28/10/2021,,02/11/2021,,"SI20CHY3-26 FS","SI20CHY3-26","SI20UBA4-66 FS","SI20UBA4-66",64,,65,,15,,15,,36,1184,"HK1003 -Blackpoint D2 - Rev.0E DD30092021"
1-4120,SI20BZL8B27,"COMMISSIONING LIGHTING/SMALL POWER INSIDE 20UMC",5121,"HK1003-Rev.0E-3",TT_Task,"55902",-,-,-,0,TK_NotStart,18/04/2023,,24/04/2023,,"SI20B--8-50 FS,SI20B--8-50 SS,SI-PM-40 FS,SI20BZL8-10 FS,SI20BZL8B26 FS","SI20B--8-50,SI20B--8-50,SI-PM-40,SI20BZL8-10,SI20BZL8B26","SI20MB-8-25 FS","SI20MB-8-25",141,,142,,33,,33,,95,480,"HK1003 -Blackpoint D2 - Rev.0E DD30092021"
1-4121,SI20BZL7F16,"LIGHTING AND SMALL POWER INSTALLATION IN ENCLOSURE 20UMC",5121,"HK1003-Rev.0E-3",TT_Task,"55902",-,-,-,0,TK_NotStart,24/09/2022,,07/10/2022,,"SI20MPB6E83 FS","SI20MPB6E83","SI20MPB6E82 FS,SI20BZK7F29 FS,SI20BZL8-10 FS","SI20MPB6E82,SI20BZK7F29,SI20BZL8-10",112,,113,,26,,26,,81,224,"HK1003 -Blackpoint D2 - Rev.0E DD30092021"
1-4122,SI20UBZ5-76,"(RFE) FOUNDATION 20UBZ05",5121,"HK1003-Rev.0E-3",TT_FinMile,"55902",-,-,-,0,TK_NotStart,31/05/2022,,31/05/2022,,"SI20UBZ5-74 FS,SI20UBZ5-74.07 FS","SI20UBZ5-74,SI20UBZ5-74.07","CL20ACA7-80 FS","CL20ACA7-80",95,,95,,22,,22,,67,1688,"HK1003 -Blackpoint D2 - Rev.0E DD30092021"
1-4123,SI20UBZ5-74,"CONSTRUCTION FOUNDATION 20UBZ05",5121,"HK1003-Rev.0E-3",TT_Task,"55902",-,-,-,0,TK_NotStart,02/05/2022,,31/05/2022,,"SI20UBZ5-75 SS,SI20UBZ5-74.07 FF","SI20UBZ5-75,SI20UBZ5-74.07","SI20UBZ5-76 FS","SI20UBZ5-76",91,,95,,21,,22,,61,1688,"HK1003 -Blackpoint D2 - Rev.0E DD30092021"
1-4124,SI20UBZ5-73,"WORK PREPARATION, EXCAVATION 20UBZ05",5121,"HK1003-Rev.0E-3",TT_Task,"55902",-,-,-,0,TK_NotStart,23/04/2022,,29/04/2022,,"SI20UBZ2-96 FS,SI20UBF5E45 FS,SI-P222-84 FS,SI20UBZ2-97 FS","SI20UBZ2-96,SI20UBF5E45,SI-P222-84,SI20UBZ2-97","SI20UBZ5-75 FS,SI20UBZ5-61 SS","SI20UBZ5-75,SI20UBZ5-61",90,,90,,21,,21,,59,144,"HK1003 -Blackpoint D2 - Rev.0E DD30092021"
1-4125,SI20UBZ5-75,"(H) START PLACING FORMWORK 20UBZ05",5121,"HK1003-Rev.0E-3",TT_Mile,"55902",-,-,-,0,TK_NotStart,30/04/2022,,30/04/2022,,"SI20UBZ5-73 FS,SI20UBZ2-98 FS","SI20UBZ5-73,SI20UBZ2-98","SI20UBZ5-74 SS,SI20UBZ5-74.00 FS","SI20UBZ5-74,SI20UBZ5-74.00",91,,91,,21,,21,,60,1688,"HK1003 -Blackpoint D2 - Rev.0E DD30092021"
1-4126,SI20UBZ2-92,"PREPARATION FOUNDATION GROUNDING DWGS 20UBZ05",5121,"HK1003-Rev.0E-3",TT_Task,"55902",-,-,-,100,TK_Complete,03/08/2021,03/08/2021,16/08/2021,16/08/2021,"SI20UBZ2-91 FF","SI20UBZ2-91","SI20UBZ2-93 FS,SI20UBZ2-93 FF","SI20UBZ2-93,SI20UBZ2-93",52,52,54,54,12,12,12,12,24,,"HK1003 -Blackpoint D2 - Rev.0E DD30092021"
1-4127,SI20UBZ2-90,"BASIC BUILDING DESIGN INCL. 3D MODEL 20UBZ05",5121,"HK1003-Rev.0E-3",TT_Task,"55902",-,-,-,100,TK_Complete,06/06/2021,06/06/2021,02/07/2021,02/07/2021,"SI20UBZ2-89 FS","SI20UBZ2-89","SI20UBZ2-91 FS","SI20UBZ2-91",44,44,47,47,10,10,11,11,16,,"HK1003 -Blackpoint D2 - Rev.0E DD30092021"
1-4128,SI20UBZ2-89,"(MS3) CONCRETE STRUCTURE FINAL DIMENSIONS, LOADS AVAILABLE 20UBZ05",5121,"HK1003-Rev.0E-3",TT_FinMile,"55902",-,-,-,100,TK_Complete,05/06/2021,05/06/2021,05/06/2021,05/06/2021,"SI20UBZ2-65 FS","SI20UBZ2-65","SI20UBZ2-91 FS,SI20UBZ2-90 FS","SI20UBZ2-91,SI20UBZ2-90",44,44,44,44,10,10,10,10,16,,"HK1003 -Blackpoint D2 - Rev.0E DD30092021"
1-4129,SI20UBZ2-96,"(F) CONCRETE STRUCTURE DWGS ON SITE RELEASED FOR EXECUTION 20UBZ05",5121,"HK1003-Rev.0E-3",TT_FinMile,"55902",-,-,-,0,TK_NotStart,22/04/2022,,22/04/2022,,"SI20UBZ2-91 FS,SI20UBZ2-95 FS","SI20UBZ2-91,SI20UBZ2-95","SI20UBZ5-73 FS","SI20UBZ5-73",89,,89,,20,,20,,59,144,"HK1003 -Blackpoint D2 - Rev.0E DD30092021"
1-4130,SI20UBZ2-91,"DETAIL DESIGN CONCRETE STRUCTURE 20UBZ05",5121,"HK1003-Rev.0E-3",TT_Task,"55902",-,-,-,100,TK_Complete,03/07/2021,03/07/2021,16/08/2021,16/08/2021,"SI20UBZ2-90 FS,SI20UBZ2-89 FS","SI20UBZ2-90,SI20UBZ2-89","SI20UBZ2-92 FF,SI20UBZ2-96 FS,SI20UBZ2-93 FS","SI20UBZ2-92,SI20UBZ2-96,SI20UBZ2-93",48,48,54,54,11,11,12,12,20,,"HK1003 -Blackpoint D2 - Rev.0E DD30092021"
1-4131,SI20UBZ2-93,"CLIENT - REVIEW - DETAIL DESIGN CONCRETE - 20UBZ05",5121,"HK1003-Rev.0E-3",TT_Task,"55902",-,-,-,100,TK_Complete,17/08/2021,17/08/2021,10/09/2021,10/09/2021,"SI20UBZ2-91 FS,SI20UBZ2-92 FS,SI20UBZ2-92 FF","SI20UBZ2-91,SI20UBZ2-92,SI20UBZ2-92","SI20UBZ2-94 SS,SI20UBZ2-94 FF","SI20UBZ2-94,SI20UBZ2-94",54,54,57,57,12,12,13,13,26,,"HK1003 -Blackpoint D2 - Rev.0E DD30092021"
1-4132,SI20UBZ2-94,"BD - SUBMISSION & APPROVAL - DETAIL DESIGN CONCRETE - 20UBZ05",5121,"HK1003-Rev.0E-3",TT_Task,"55902",-,-,-,0,TK_NotStart,10/10/2021,,08/12/2021,,"SI20UBZ2-93 SS,SI20UBZ2-93 FF,SI-P221-135& SS","SI20UBZ2-93,SI20UBZ2-93,SI-P221-135&","SI20UBZ2-95 FS,SI20UBZ2-95 FF,SI20UBZ2-97 FS","SI20UBZ2-95,SI20UBZ2-95,SI20UBZ2-97",62,,70,,14,,16,,33,1000,"HK1003 -Blackpoint D2 - Rev.0E DD30092021"
1-4133,SI20UBZ2-95,"BD - CONSENT LETTER - DESIGN  20UBZ05",5121,"HK1003-Rev.0E-3",TT_Task,"55902",-,-,-,0,TK_NotStart,09/12/2021,,05/01/2022,,"SI20UBZ2-94 FS,SI20UBZ2-94 FF","SI20UBZ2-94,SI20UBZ2-94","SI20UBZ2-96 FS,SI20UBZ2-98 FS","SI20UBZ2-96,SI20UBZ2-98",70,,74,,16,,17,,41,1000,"HK1003 -Blackpoint D2 - Rev.0E DD30092021"
1-4134,SI20MBR6-49,"INSTALLATION CABLE TRAYS DIFFUSER 20MBR",5121,"HK1003-Rev.0E-3",TT_Task,"55902",-,-,-,0,TK_NotStart,08/10/2022,,21/10/2022,,"SI20MBR6-48 FS,SI20MBR6-48 FF","SI20MBR6-48,SI20MBR6-48","SI20MBR7-15 FS,SI20MBA6-40 FS","SI20MBR7-15,SI20MBA6-40",114,,115,,26,,27,,83,176,"HK1003 -Blackpoint D2 - Rev.0E DD30092021"
1-4135,SI20BAB2-9,"ERECTION MANUALS ON SITE CT / GROUNDING CUBICLE 20BAB",5121,"HK1003-Rev.0E-3",TT_Mile,"55902",-,-,-,0,TK_NotStart,03/07/2022,,03/07/2022,,"SI20BAB2-11 FS,SI20BAB2-5 FS,SI20BAB2-6 FS","SI20BAB2-11,SI20BAB2-5,SI20BAB2-6","SI20BAB7-15 FS","SI20BAB7-15",100,,100,,23,,23,,72,2176,"HK1003 -Blackpoint D2 - Rev.0E DD30092021"
1-4136,SI20BAB2-10,"LOGISTICS AND CUSTOMS PREPARATION CT / GROUNDING CUBICLE 20BAB",5121,"HK1003-Rev.0E-3",TT_Task,"55902",-,-,-,0,TK_NotStart,14/04/2022,,11/05/2022,,"SI20BAB2-8 FS","SI20BAB2-8","SI20BAB2-11 FS","SI20BAB2-11",88,,92,,20,,21,,57,2368,"HK1003 -Blackpoint D2 - Rev.0E DD30092021"
1-4137,SI20BAB2-8,"TIMES OF COMPLETION (FINAL DATA IN KANLOG) CT / GROUNDING CUBICLE 20BAB",5121,"HK1003-Rev.0E-3",TT_FinMile,"55902",-,-,-,0,TK_NotStart,13/04/2022,,13/04/2022,,"SI20BAB2-6 FS","SI20BAB2-6","SI20BAB2-10 FS","SI20BAB2-10",88,,88,,20,,20,,57,2368,"HK1003 -Blackpoint D2 - Rev.0E DD30092021"
1-4138,SI20BAB2-2,"QUOTATION STAGE CT / GROUNDING CUBICLE 20BAB",5121,"HK1003-Rev.0E-3",TT_Task,"55902",-,-,-,100,TK_Complete,01/07/2021,01/07/2021,15/07/2021,15/07/2021,"SI20BAB2-3 FS,SI20BAB2-3 FF","SI20BAB2-3,SI20BAB2-3","SI20BAB2-5 FS,SI20BAB2-6 FS","SI20BAB2-5,SI20BAB2-6",47,47,49,49,11,11,11,11,20,,"HK1003 -Blackpoint D2 - Rev.0E DD30092021"
1-4139,SI20BAB2-3,"RFQ CT / GROUNDING CUBICLE 20BAB",5121,"HK1003-Rev.0E-3",TT_Mile,"55902",-,-,-,100,TK_Complete,01/07/2021,01/07/2021,01/07/2021,01/07/2021,"SI20BAB2-1 FS","SI20BAB2-1","SI20BAB2-2 FS,SI20BAB2-2 FF","SI20BAB2-2,SI20BAB2-2",47,47,47,47,11,11,11,11,20,,"HK1003 -Blackpoint D2 - Rev.0E DD30092021"
1-4140,SI20BAB2-1,"BASIC DESIGN / SPECIFICATION  CT / GROUNDING CUBICLE 20BAB",5121,"HK1003-Rev.0E-3",TT_Task,"55902",-,-,-,100,TK_Complete,17/02/2021,17/02/2021,30/06/2021,30/06/2021,"SI-----1-05 FS","SI-----1-05","SI20BAB2-3 FS,SI20BAB2-7 FS,SI20BAB2-4 FS","SI20BAB2-3,SI20BAB2-7,SI20BAB2-4",28,28,47,47,6,6,11,11,5,,"HK1003 -Blackpoint D2 - Rev.0E DD30092021"
1-4141,SI20BAB2-5,"CONTRACT INTO FORCE CT / GROUNDING CUBICLE 20BAB",5121,"HK1003-Rev.0E-3",TT_Mile,"55902",-,-,-,100,TK_Complete,16/07/2021,16/07/2021,16/07/2021,16/07/2021,"SI20BAB2-2 FS","SI20BAB2-2","SI20BAB2-7 FS,SI20BAB2-9 FS,SI20BAB2-4 FS","SI20BAB2-7,SI20BAB2-9,SI20BAB2-4",49,49,49,49,11,11,11,11,22,,"HK1003 -Blackpoint D2 - Rev.0E DD30092021"
1-4142,SI20BAB2-7,"(DF) INPUT FOR MS3 CT / GROUNDING CUBICLE 20BAB",5121,"HK1003-Rev.0E-3",TT_FinMile,"55902",-,-,-,100,TK_Complete,16/07/2021,16/07/2021,16/07/2021,16/07/2021,"SI20BAB2-5 FS,SI20BAB2-1 FS","SI20BAB2-5,SI20BAB2-1","SI20UMC2B20 FF","SI20UMC2B20",49,49,49,49,11,11,11,11,22,,"HK1003 -Blackpoint D2 - Rev.0E DD30092021"
1-4143,SI20BAB2-11,"(RFS) READY FOR SHIPMENT CT / GROUNDING CUBICLE 20BAB",5121,"HK1003-Rev.0E-3",TT_FinMile,"55902",-,-,-,0,TK_NotStart,11/05/2022,,11/05/2022,,"SI20BAB2-10 FS","SI20BAB2-10","SI20BAB2-9 FS,SI20BAB4-25 FS","SI20BAB2-9,SI20BAB4-25",92,,92,,21,,21,,64,2368,"HK1003 -Blackpoint D2 - Rev.0E DD30092021"
1-4144,SI20BAB2-4,"FINAL INPUT DWGS AVAILABLE CT / GROUNDING CUBICLE 20BAB",5121,"HK1003-Rev.0E-3",TT_Mile,"55902",-,-,-,100,TK_Complete,16/07/2021,16/07/2021,16/07/2021,16/07/2021,"SI20BAB2-1 FS,SI20BAB2-5 FS","SI20BAB2-1,SI20BAB2-5","SI--C--2C55 FS","SI--C--2C55",49,49,49,49,11,11,11,11,22,,"HK1003 -Blackpoint D2 - Rev.0E DD30092021"
1-4145,SI20BAB2-6,"DESIGN / MANUFACTURING  CT / GROUNDING CUBICLE 20BAB",5121,"HK1003-Rev.0E-3",TT_Task,"55902",-,-,-,41,TK_Active,14/05/2021,14/05/2021,13/04/2022,,"SI20BAB2-2 FS","SI20BAB2-2","SI20BAB2-8 FS,SI20BAB2-9 FS","SI20BAB2-8,SI20BAB2-9",40,40,88,,9,9,20,,12,2368,"HK1003 -Blackpoint D2 - Rev.0E DD30092021"
1-4146,SI--9998-23&,"START COLD COMMISSIONING CW SYSTEMS",5121,"HK1003-Rev.0E-3",TT_Mile,"55902",-,-,-,0,TK_NotStart,31/03/2023,,31/03/2023,,"SI-----1-05 FS","SI-----1-05","SI20GHC8H25 FS,SI20PAB8-05 FS,SI20PAD8-10 FS,SI20PAH8-25 FS,SI20PAR8-06 FS,SI20PGB8-10 FS,SI20QCB8-10 FS,SI20PCB8M10 FS,SI20PCB8M25 FS","SI20GHC8H25,SI20PAB8-05,SI20PAD8-10,SI20PAH8-25,SI20PAR8-06,SI20PGB8-10,SI20QCB8-10,SI20PCB8M10,SI20PCB8M25",138,,138,,32,,32,,93,104,"HK1003 -Blackpoint D2 - Rev.0E DD30092021"
1-4147,SI20M--7A16,"ELECTRICAL ERECTION FOR MKC02",5121,"HK1003-Rev.0E-3",TT_Task,"55902",-,-,-,0,TK_NotStart,24/07/2022,,06/08/2022,,"SI20MBJ7-11 FS,SI20UBX5B45 FS","SI20MBJ7-11,SI20UBX5B45","SI20M--8-66 FS,SI20BZK7D11# FF,SI20BZK7D11# SS,SI20BFT8-79 FS","SI20M--8-66,SI20BZK7D11#,SI20BZK7D11#,SI20BFT8-79",103,,105,,24,,24,,75,1936,"HK1003 -Blackpoint D2 - Rev.0E DD30092021"
1-4148,SI20BAC7-16,"ERECTION GEN. CIRCUIT BREAKER 20BAC",5121,"HK1003-Rev.0E-3",TT_Task,"55902",-,-,-,0,TK_NotStart,09/09/2022,,15/09/2022,,"SI20BAC7-15 FS,SI20UBX5E45 FS","SI20BAC7-15,SI20UBX5E45","SI20BZK7A28 FS,SI20BAA7-66 FS,SI20BZK7D11# FF,SI20BZK7D11# SS,SI20BA-8-11 FS","SI20BZK7A28,SI20BAA7-66,SI20BZK7D11#,SI20BZK7D11#,SI20BA-8-11",109,,110,,25,,25,,80,520,"HK1003 -Blackpoint D2 - Rev.0E DD30092021"
1-4149,SI20MKC8-76,"ENERGISATION SFC/SEE TRANSFORMER 20MKC02",5121,"HK1003-Rev.0E-3",TT_Mile,"55902",-,-,-,0,TK_NotStart,19/04/2023,,19/04/2023,,"SI20M--8-66 FS,SI20BBA8-35 SS,SI20BAC8-26 FS,SI--B--2-68 FS,SI20UBA7-15 FS,SI20SGY7A15 FS,SI20UBA7-25 FS,SI20BFA8-25 FS,SI20CJT8-20 FS,SI--B--2-93 FS,SI20B--8-50 FS","SI20M--8-66,SI20BBA8-35,SI20BAC8-26,SI--B--2-68,SI20UBA7-15,SI20SGY7A15,SI20UBA7-25,SI20BFA8-25,SI20CJT8-20,SI--B--2-93,SI20B--8-50","SI20MB-9-15 FS,SI20MB-9-15 SS","SI20MB-9-15,SI20MB-9-15",141,,141,,33,,33,,95,360,"HK1003 -Blackpoint D2 - Rev.0E DD30092021"
1-4150,SI20M--8-66,"COLD COMMISSIONING SFC TRANSFORMER 20MKC02",5121,"HK1003-Rev.0E-3",TT_Task,"55902",-,-,-,0,TK_NotStart,12/04/2023,,18/04/2023,,"SI20CPA8-25 FS,SI20M--7A16 FS,SI20SGC6J24 FS,SI20SGY7A21 FS,SI-PM-40 FS,SI20BFT8-79 FS,SI20CJT8-20 FS","SI20CPA8-25,SI20M--7A16,SI20SGC6J24,SI20SGY7A21,SI-PM-40,SI20BFT8-79,SI20CJT8-20","SI20MKC8-76 FS","SI20MKC8-76",140,,141,,32,,33,,95,360,"HK1003 -Blackpoint D2 - Rev.0E DD30092021"
1-4151,SI20ACA7-71,"TESTING GIL BEFORE HV CABLE CONNECTION 400kV 20ACA",5121,"HK1003-Rev.0E-3",TT_Task,"55902",-,-,-,0,TK_NotStart,21/11/2022,,04/12/2022,,"SI20ACA7-70 FS","SI20ACA7-70","CL20ACA7-80 FS,CL20ACA7-80 FF","CL20ACA7-80,CL20ACA7-80",120,,122,,28,,28,,85,192,"HK1003 -Blackpoint D2 - Rev.0E DD30092021"
1-4152,SI20BZK7-180,"ERECTION CABLING 20UBA1110/20 TO HRSG (AFTER ELECTRICAL MODULES INSTALLATION)",5121,"HK1003-Rev.0E-3",TT_Task,"55902",-,-,-,0,TK_NotStart,26/12/2022,,26/02/2023,,"SI--PEE7-20 FS,SI20BZP7-125 FS,SI20UBA7L15 FS,SI20UBA7L16 FS","SI--PEE7-20,SI20BZP7-125,SI20UBA7L15,SI20UBA7L16","SI20HAA8E17 FS,SI20HAD8E10 FS,SI20HAD8F10 FS,SI20HAD8G10 FS,SI20SGY7A16 FS,SI20CFE7A25 FS,SI20BF-8-19 FS","SI20HAA8E17,SI20HAD8E10,SI20HAD8F10,SI20HAD8G10,SI20SGY7A16,SI20CFE7A25,SI20BF-8-19",125,,134,,29,,31,,87,288,"HK1003 -Blackpoint D2 - Rev.0E DD30092021"
1-4153,SI20UBA4B46,"(OTD-OS) ON SITE (ET4d) 20UBA7110/7210/7410",5121,"HK1003-Rev.0E-3",TT_FinMile,"55902",-,-,-,0,TK_NotStart,22/06/2022,,22/06/2022,,"SI20UBA4G25 FS","SI20UBA4G25","SI20UBA7-28 FS","SI20UBA7-28",98,,98,,23,,23,,70,744,"HK1003 -Blackpoint D2 - Rev.0E DD30092021"
1-4154,SI20UBA4B47,"(OTD-OS) ON SITE (ET4d) ELECTRICAL MODULES 20UBA7310/30",5121,"HK1003-Rev.0E-3",TT_FinMile,"55902",-,-,-,0,TK_NotStart,26/06/2022,,26/06/2022,,"SI20UBA4G58 FS,SI20UBA4B48 FS","SI20UBA4G58,SI20UBA4B48","SI20UBA7-31 FS","SI20UBA7-31",99,,99,,23,,23,,71,768,"HK1003 -Blackpoint D2 - Rev.0E DD30092021"
1-4155,SI20UBA4B48,"(OTD-OS) ON SITE (ET4d) ELECTRICAL MODULES 20UBA7610/20",5121,"HK1003-Rev.0E-3",TT_FinMile,"55902",-,-,-,0,TK_NotStart,26/06/2022,,26/06/2022,,"SI20UBA4J25 FS","SI20UBA4J25","SI20UBA7-34 FS,SI20UBA4B47 FS","SI20UBA7-34,SI20UBA4B47",99,,99,,23,,23,,71,768,"HK1003 -Blackpoint D2 - Rev.0E DD30092021"
1-4156,SI20UBA2K2,"E-AND I&C- MANUALS FOR COMP. INSTALL.  AVAILABLE ELECTRICAL MODULES 01UBA9010/20",5121,"HK1003-Rev.0E-3",TT_Mile,"55902",-,-,-,0,TK_NotStart,27/12/2021,,27/12/2021,,"SI--UBA2G85 FS","SI--UBA2G85","SI20UBA3C20 FS","SI20UBA3C20",73,,73,,17,,17,,43,912,"HK1003 -Blackpoint D2 - Rev.0E DD30092021"
1-4157,SI20UBA2K3,"E-AND I&C- MANUALS FOR COMP. INSTALL.  AVAILABLE ELECTRICAL MODULES 20UBA7910/20",5121,"HK1003-Rev.0E-3",TT_Mile,"55902",-,-,-,0,TK_NotStart,28/01/2022,,28/01/2022,,"SI--UBA2G85 FS","SI--UBA2G85","SP20UBA3H55 FS","SP20UBA3H55",77,,77,,18,,18,,47,584,"HK1003 -Blackpoint D2 - Rev.0E DD30092021"
1-4158,SI20ACA7-81,"DEGASING OF GIL FOR CABLE CONNECTION COMPARTMENT",5121,"HK1003-Rev.0E-3",TT_Task,"55902",-,-,-,0,TK_NotStart,16/01/2023,,17/01/2023,,"CL20ACA7-80 FS,CL20ACA7-80 FF","CL20ACA7-80,CL20ACA7-80","CL20ACA7-82 FS,CL20ACA7-82 FF","CL20ACA7-82,CL20ACA7-82",128,,128,,29,,29,,88,192,"HK1003 -Blackpoint D2 - Rev.0E DD30092021"
1-4159,CL20ACA7-82,"HV CABLE CONNECTION BY CUSTOMER",5121,"HK1003-Rev.0E-3",TT_Task,"55902",-,-,-,0,TK_NotStart,18/01/2023,,07/02/2023,,"SI20ACA7-81 FS,SI20ACA7-81 FF","SI20ACA7-81,SI20ACA7-81","SI20ACA7-83 FS,SI-----8-07& FS,SI20ACA8-27 FS,SI20TPE4A7-25 FS","SI20ACA7-83,SI-----8-07&,SI20ACA8-27,SI20TPE4A7-25",128,,131,,30,,30,,88,192,"HK1003 -Blackpoint D2 - Rev.0E DD30092021"
1-4160,SI20ACA7-83,"SF6 GASING FOR HV CABLE TESTING",5121,"HK1003-Rev.0E-3",TT_Task,"55902",-,-,-,0,TK_NotStart,08/02/2023,,09/02/2023,,"CL20ACA7-82 FS","CL20ACA7-82","SI20ACA7-84 FS,SI20ACA8-27 FS","SI20ACA7-84,SI20ACA8-27",131,,131,,30,,30,,90,240,"HK1003 -Blackpoint D2 - Rev.0E DD30092021"
1-4161,SI20ACA7-84,"DEGASING OF GIL  - INSTALL LINKS BETWEEN CABLE TO GIL CONDUCTOR",5121,"HK1003-Rev.0E-3",TT_Task,"55902",-,-,-,0,TK_NotStart,10/02/2023,,23/02/2023,,"SI20ACA7-83 FS","SI20ACA7-83","SI20ACA7-85 FS,SI20TPE4A7-25 SS","SI20ACA7-85,SI20TPE4A7-25",131,,133,,30,,31,,90,240,"HK1003 -Blackpoint D2 - Rev.0E DD30092021"
1-4162,SI20ACA7-85,"GASING OF CABLE CONNECTION COMPARTMENT",5121,"HK1003-Rev.0E-3",TT_Task,"55902",-,-,-,0,TK_NotStart,24/02/2023,,25/02/2023,,"SI20ACA7-84 FS","SI20ACA7-84","SI20ACA7-86 FS,SI20ACA8-26 FS,SI20ACA8-27 FS","SI20ACA7-86,SI20ACA8-26,SI20ACA8-27",133,,134,,31,,31,,91,240,"HK1003 -Blackpoint D2 - Rev.0E DD30092021"
1-4163,SI20ACA7-86,"FLANGE LEAKAGE TEST GIL",5121,"HK1003-Rev.0E-3",TT_Task,"55902",-,-,-,0,TK_NotStart,26/02/2023,,27/02/2023,,"SI20ACA7-85 FS","SI20ACA7-85","SI20ACA9-85 FS,SI20ACA7-87# FF,SI20ACA8-26 FS","SI20ACA9-85,SI20ACA7-87#,SI20ACA8-26",134,,134,,31,,31,,91,240,"HK1003 -Blackpoint D2 - Rev.0E DD30092021"
1-4164,SI--L--2-81,"SYSTEM DESCRIPTION L-SYSTEMS",5121,"HK1003-Rev.0E-3",TT_Task,"55902",-,-,-,100,TK_Complete,30/01/2021,30/01/2021,28/02/2021,28/02/2021,"SI--L--2-10 FS","SI--L--2-10","SI--L--2-25 FS","SI--L--2-25",26,26,30,30,6,6,7,7,3,,"HK1003 -Blackpoint D2 - Rev.0E DD30092021"
1-4165,SI--P--2-81,"SYSTEM DESCRIPTION P-SYSTEMS",5121,"HK1003-Rev.0E-3",TT_Task,"55902",-,-,-,100,TK_Complete,26/01/2021,26/01/2021,01/03/2021,01/03/2021,"SI--P--2-10 SS","SI--P--2-10","SI--P--2-45 FS","SI--P--2-45",25,25,30,30,5,5,7,7,3,,"HK1003 -Blackpoint D2 - Rev.0E DD30092021"
1-4166,SI--G--2-89,"SYSTEM DESCRIPTION G-SYSTEMS",5121,"HK1003-Rev.0E-3",TT_Task,"55902",-,-,-,100,TK_Complete,29/01/2021,29/01/2021,27/02/2021,27/02/2021,"SI--G--2-10 SS","SI--G--2-10","SI--G--2-83 FS","SI--G--2-83",25,25,30,30,6,6,7,7,3,,"HK1003 -Blackpoint D2 - Rev.0E DD30092021"
1-4167,SI20B--8-51,"COMMISSIONING ELECTRICAL MODULES 20UBA1110/20",5121,"HK1003-Rev.0E-3",TT_Task,"55902",-,-,-,0,TK_NotStart,11/04/2023,,24/04/2023,,"SI20UBA8-60 FS,SI20SGC8-27 SS,SI20SGJ8-30 SS,SI20B--8-50 FS,SI20BZK7-190 FS,SI-PM-40 FS,SI20BBA8-37 SS","SI20UBA8-60,SI20SGC8-27,SI20SGJ8-30,SI20B--8-50,SI20BZK7-190,SI-PM-40,SI20BBA8-37","SI20BF-8-21 SS","SI20BF-8-21",140,,142,,32,,33,,94,56,"HK1003 -Blackpoint D2 - Rev.0E DD30092021"
1-4168,SI20HA-3D5,"DETAIL DESIGN, MANUFACTURING, SHOP TEST  HRSG REMAINING MATERIAL",5121,"HK1003-Rev.0E-3",TT_Task,"55902",-,-,-,45,TK_Active,27/05/2021,27/05/2021,02/03/2022,,"SI--HA-2-85 FS","SI--HA-2-85","SI20HA-4D10 FS,SI20HA-4D10 FF","SI20HA-4D10,SI20HA-4D10",42,42,82,,9,9,19,,14,2632,"HK1003 -Blackpoint D2 - Rev.0E DD30092021"
1-4169,SI20HA-4D15,"LOGISTICS AND CUSTOMS PREPARATION - HRSG REMAINING MATERIAL",5121,"HK1003-Rev.0E-3",TT_Task,"55902",-,-,-,0,TK_NotStart,03/03/2022,,30/03/2022,,"SI20HA-4D10 FS,SI20HA-4D10 FF","SI20HA-4D10,SI20HA-4D10","SI20HA-4D20 FS,SI20HA-4D20 FF","SI20HA-4D20,SI20HA-4D20",82,,86,,19,,20,,51,2632,"HK1003 -Blackpoint D2 - Rev.0E DD30092021"
1-4170,SI20HA-4D10,"TIMES OF COMPLETION (FINAL DATA IN KANLOG) -  HRSG REMAINING MATERIAL",5121,"HK1003-Rev.0E-3",TT_FinMile,"55902",-,-,-,0,TK_NotStart,02/03/2022,,02/03/2022,,"SI20HA-3D5 FS,SI20HA-3D5 FF","SI20HA-3D5,SI20HA-3D5","SI20HA-4D15 FS,SI20HA-4D15 FF","SI20HA-4D15,SI20HA-4D15",82,,82,,19,,19,,51,2632,"HK1003 -Blackpoint D2 - Rev.0E DD30092021"
1-4171,SI20HA-4D30,"(OTD-OS) ON SITE HRSG REMAINING MATERIAL",5121,"HK1003-Rev.0E-3",TT_FinMile,"55902",-,-,-,0,TK_NotStart,29/04/2022,,29/04/2022,,"SI20HA-4D35 FS,SI20HA-4D35 FF","SI20HA-4D35,SI20HA-4D35","SI20HB-6-40 FS","SI20HB-6-40",90,,90,,21,,21,,60,2632,"HK1003 -Blackpoint D2 - Rev.0E DD30092021"
1-4172,SI20HA-4D35,"TRANSPORT HRSG REMAINING MATERIAL",5121,"HK1003-Rev.0E-3",TT_Task,"55902",-,-,-,0,TK_NotStart,31/03/2022,,29/04/2022,,"SI20HA-4D20 FS","SI20HA-4D20","SI20HA-4D30 FS,SI20HA-4D30 FF","SI20HA-4D30,SI20HA-4D30",86,,90,,20,,21,,54,2632,"HK1003 -Blackpoint D2 - Rev.0E DD30092021"
1-4173,SI20TP-180&,"ACCESS TO CONTROL ROOM IN D1 REQUIRED",5121,"HK1003-Rev.0E-3",TT_Mile,"55902",-,-,-,0,TK_NotStart,04/05/2022,,04/05/2022,,"SI-----1-05 FS","SI-----1-05","SI20UCA7-08 FS,SI20UCA7-16 FS","SI20UCA7-08,SI20UCA7-16",91,,91,,21,,21,,61,1512,"HK1003 -Blackpoint D2 - Rev.0E DD30092021"
1-4174,SI20BZK7B33,"INTERCONNECTING CABLING WITH D1 (LBG/LDK)",5121,"HK1003-Rev.0E-3",TT_Task,"55902",-,-,-,0,TK_NotStart,17/11/2022,,22/03/2023,,"SI20BZP7-5 FS,SI20UBA7C-15 FS,SI20BZP7-191 FS,SI20UBA7C-32 FS,SI20BZP7-80 FS,SI20BZP7-196 FS,SI20BZP7D19 FS,SI20BZP7D18 FS","SI20BZP7-5,SI20UBA7C-15,SI20BZP7-191,SI20UBA7C-32,SI20BZP7-80,SI20BZP7-196,SI20BZP7D19,SI20BZP7D18","SI20B--8-50 FS,SI--BRU7-19# SS,SI--BRU7-19# FF","SI20B--8-50,SI--BRU7-19#,SI--BRU7-19#",119,,137,,27,,32,,85,168,"HK1003 -Blackpoint D2 - Rev.0E DD30092021"
1-4175,SI20HA-3D81,"DETAIL DESIGN, MANUFACTURING INSULATION MATERIAL HRSG20 (OUTLET DUCT & SEALING AREAS STACK)",5121,"HK1003-Rev.0E-3",TT_Task,"55902",-,-,-,0,TK_NotStart,26/10/2021,,31/01/2022,,"SI--HA-2-85 FS","SI--HA-2-85","SI20HA-4D43 FS,SI20HA-4D41 FS,SI20HA-3D82 FS","SI20HA-4D43,SI20HA-4D41,SI20HA-3D82",64,,78,,15,,18,,36,448,"HK1003 -Blackpoint D2 - Rev.0E DD30092021"
1-4176,SI20HA-4D42,"LOGISTICS AND CUSTOMS PREPARATION - INSULATION MATERIAL HRSG20 (OUTLET DUCT & SEALING AREAS STACK)",5121,"HK1003-Rev.0E-3",TT_Task,"55902",-,-,-,0,TK_NotStart,15/04/2022,,12/05/2022,,"SI20HA-4D41 FS,SI20HA-4D41 FF","SI20HA-4D41,SI20HA-4D41","SI20HA-3B84 FS","SI20HA-3B84",88,,92,,20,,21,,58,2248,"HK1003 -Blackpoint D2 - Rev.0E DD30092021"
1-4177,SI20HA-4D41,"TIMES OF COMPLETION (FINAL DATA IN KANLOG) -  INSULATION MATERIAL HRSG20 (OUTLET DUCT & SEALING AREAS STACK)",5121,"HK1003-Rev.0E-3",TT_FinMile,"55902",-,-,-,0,TK_NotStart,14/04/2022,,14/04/2022,,"SI20HA-3D81 FS","SI20HA-3D81","SI20HA-4D42 FS,SI20HA-4D42 FF","SI20HA-4D42,SI20HA-4D42",88,,88,,20,,20,,57,2248,"HK1003 -Blackpoint D2 - Rev.0E DD30092021"
1-4178,SI20HA-4D44,"LOGISTICS AND CUSTOMS PREPARATION - INSULATION MATERIAL HRSG20 (PIPES, DRUMS, VESSELS)",5121,"HK1003-Rev.0E-3",TT_Task,"55902",-,-,-,0,TK_NotStart,26/11/2022,,23/12/2022,,"SI20HA-4D43 FS,SI20HA-4D43 FF","SI20HA-4D43,SI20HA-4D43","SI20HA-3B83 FS","SI20HA-3B83",121,,124,,28,,29,,86,448,"HK1003 -Blackpoint D2 - Rev.0E DD30092021"
1-4179,SI20HA-4D43,"TIMES OF COMPLETION (FINAL DATA IN KANLOG) INSULATION MATERIAL HRSG20 (PIPES, DRUMS, VESSELS)",5121,"HK1003-Rev.0E-3",TT_FinMile,"55902",-,-,-,0,TK_NotStart,25/11/2022,,25/11/2022,,"SI20HA-3D81 FS,SI20HA-3D82 FS","SI20HA-3D81,SI20HA-3D82","SI20HA-4D44 FS,SI20HA-4D44 FF","SI20HA-4D44,SI20HA-4D44",120,,120,,28,,28,,85,448,"HK1003 -Blackpoint D2 - Rev.0E DD30092021"
1-4180,SI20HA-3D82,"DETAIL DESIGN, MANUFACTURING INSULATION MATERIAL HRSG20 (PIPES, DRUMS, VESSELS)",5121,"HK1003-Rev.0E-3",TT_Task,"55902",-,-,-,0,TK_NotStart,20/08/2022,,25/11/2022,,"SI--HA-2-85 FS,SI20HA-3D81 FS","SI--HA-2-85,SI20HA-3D81","SI20HA-4D43 FS","SI20HA-4D43",107,,120,,24,,28,,78,448,"HK1003 -Blackpoint D2 - Rev.0E DD30092021"
1-4181,SI20UBA8G28,"CHARGING BATTERIES",5121,"HK1003-Rev.0E-3",TT_Task,"55902",-,-,-,0,TK_NotStart,14/02/2023,,16/02/2023,,"SI20BU-8-25 SS","SI20BU-8-25","SI20BUK8-50 FS","SI20BUK8-50",132,,132,,30,,30,,90,48,"HK1003 -Blackpoint D2 - Rev.0E DD30092021"
1-4182,SI20BBA8-37,"FEEDER COMMISSIONING MV SWITCHGEAR 20BBA",5121,"HK1003-Rev.0E-3",TT_Task,"55902",-,-,-,0,TK_NotStart,29/03/2023,,16/05/2023,,"SI20BBA8-36 FS,SI20BBA8-48 FS,SI20B--8-52 FS,SI20B--8-52 FF","SI20BBA8-36,SI20BBA8-48,SI20B--8-52,SI20B--8-52","SI20MB-9-15 FS,SI20UBA8G26 SS,SI20B--8-51 SS,SI--BFT8-25 SS,SI20SCA8-17 SS,SI20LAC8B25 SS,SI20EK-8-25 SS","SI20MB-9-15,SI20UBA8G26,SI20B--8-51,SI--BFT8-25,SI20SCA8-17,SI20LAC8B25,SI20EK-8-25",138,,145,,32,,33,,93,152,"HK1003 -Blackpoint D2 - Rev.0E DD30092021"
1-4183,SI20BBA8-36,"COMMISSIONING MV SWITCHGEAR 20BBA",5121,"HK1003-Rev.0E-3",TT_Task,"55902",-,-,-,0,TK_NotStart,21/02/2023,,06/03/2023,,"SI-PM-40 FS,SI20BFA8-25 FS,SI20BUK8-50 FS,SI20BBA8-10 FS,SI20TPI10A8-30 FS","SI-PM-40,SI20BFA8-25,SI20BUK8-50,SI20BBA8-10,SI20TPI10A8-30","SI20BBT8-25 SS,SI20BBA8-37 FS,SI20BB8-45 FS,SI20CHA8-26 FS,SI20BBA7-51 FS,SI20BBA8-25 FS,SI20BFT8-25 SS","SI20BBT8-25,SI20BBA8-37,SI20BB8-45,SI20CHA8-26,SI20BBA7-51,SI20BBA8-25,SI20BFT8-25",133,,135,,31,,31,,91,64,"HK1003 -Blackpoint D2 - Rev.0E DD30092021"
1-4184,SI20BFT8-77,"ENERGISING LV-TRANSFORMERS 20BFT02",5121,"HK1003-Rev.0E-3",TT_Mile,"55902",-,-,-,0,TK_NotStart,12/04/2023,,12/04/2023,,"SI20BFT8-76 FS","SI20BFT8-76","SI20BF-8-25 FS","SI20BF-8-25",140,,140,,32,,32,,95,104,"HK1003 -Blackpoint D2 - Rev.0E DD30092021"
1-4185,SI20BFT8-76,"COMMISSIONING LV-TRANSFORMERS 20BFT02",5121,"HK1003-Rev.0E-3",TT_Task,"55902",-,-,-,0,TK_NotStart,28/03/2023,,10/04/2023,,"SI20SGC8-32 FS,SI20B--8-50 FF,SI-PM-40 FS,SI20BFT8-78 FS,SI20BUK8-50 FS","SI20SGC8-32,SI20B--8-50,SI-PM-40,SI20BFT8-78,SI20BUK8-50","SI20BFT8-77 FS","SI20BFT8-77",138,,140,,32,,32,,93,104,"HK1003 -Blackpoint D2 - Rev.0E DD30092021"
1-4186,SI20UBA4G60,"TRANSPORT ELECTRICAL MODULES 20UBA7310/30 TO TESTING FACILITY",5121,"HK1003-Rev.0E-3",TT_Task,"55902",-,-,-,0,TK_NotStart,28/01/2022,,03/02/2022,,"SI20UBA3H55 FS,SI20UBA4G61 FS","SI20UBA3H55,SI20UBA4G61","SI20UBA4-63 FS","SI20UBA4-63",77,,78,,18,,18,,47,584,"HK1003 -Blackpoint D2 - Rev.0E DD30092021"
1-4187,SI20UBA3-94,"ELECTRICAL MODULES 20UBA7310/30 FAT WITH CLIENT",5121,"HK1003-Rev.0E-3",TT_Task,"55902",-,-,-,0,TK_NotStart,11/03/2022,,17/03/2022,,"SI20UBA3-91 FS","SI20UBA3-91","SI20UBA3-92 FS","SI20UBA3-92",83,,84,,19,,19,,52,792,"HK1003 -Blackpoint D2 - Rev.0E DD30092021"
1-4188,SI20BZP7-181,"ERECTION CABLE TRAYS ON 20UEZ01",5121,"HK1003-Rev.0E-3",TT_Task,"55902",-,-,-,0,TK_NotStart,28/04/2022,,11/05/2022,,"SI--BZP4B40 FS,CLP20UEZ5-80 FS,SI20BZP7-174 FS,SI--PEE7-20 FS","SI--BZP4B40,CLP20UEZ5-80,SI20BZP7-174,SI--PEE7-20","SI20EK-7H15 FS,SI20LBA7J15 FS,SI20SCB7A15 FS,SI20QFB7H15 FS,SI20HSJ7A15 FS","SI20EK-7H15,SI20LBA7J15,SI20SCB7A15,SI20QFB7H15,SI20HSJ7A15",90,,92,,21,,21,,60,2672,"HK1003 -Blackpoint D2 - Rev.0E DD30092021"
1-4189,SI20BZP7-182,"ERECTION CABLE TRAYS ON 20ULZ02",5121,"HK1003-Rev.0E-3",TT_Task,"55902",-,-,-,0,TK_NotStart,16/07/2022,,29/07/2022,,"CLP20ULZ5-80 FS,SI--BZP4B40 FS,SI20BZP7-26 FS,SI--PEE7-20 FS,SI20BZP7-105 SS","CLP20ULZ5-80,SI--BZP4B40,SI20BZP7-26,SI--PEE7-20,SI20BZP7-105","SI20BZK7B28 FS,SI20BZP7-191 FS,SI20BZK7B01 FS","SI20BZK7B28,SI20BZP7-191,SI20BZK7B01",102,,103,,23,,24,,74,144,"HK1003 -Blackpoint D2 - Rev.0E DD30092021"
1-4190,SI20BZK7F27,"CABLING TO GENERATOR 20MKA",5121,"HK1003-Rev.0E-3",TT_Task,"55902",-,-,-,0,TK_NotStart,15/10/2022,,11/11/2022,,"SI20BZP7-100 FS,SI20BZP7-100 FF,SI20BZK7-25 FS","SI20BZP7-100,SI20BZP7-100,SI20BZK7-25","SI20MKA8-10 FS,SI20BZK7D10# FF,SI20BZK7D10# SS","SI20MKA8-10,SI20BZK7D10#,SI20BZK7D10#",115,,118,,26,,27,,83,1456,"HK1003 -Blackpoint D2 - Rev.0E DD30092021"
1-4191,SI20BZP7-183,"ERECTION CABLE TRAYS FOR GENERATOR AREA 20MKA",5121,"HK1003-Rev.0E-3",TT_Task,"55902",-,-,-,0,TK_NotStart,10/09/2022,,30/09/2022,,"SI20MKA6-18 FS","SI20MKA6-18","SI20BZK7A25 FS,SI20BZK7E26 FS","SI20BZK7A25,SI20BZK7E26",110,,112,,25,,26,,80,880,"HK1003 -Blackpoint D2 - Rev.0E DD30092021"
1-4192,SI20BZK7A34,"CABLING GT TO AIR INTAKE 20MBL",5121,"HK1003-Rev.0E-3",TT_Task,"55902",-,-,-,0,TK_NotStart,11/12/2022,,17/12/2022,,"SI20BZP7-150 FS,SI20BZK7-25 FS,SI--BZK4-40 FS","SI20BZP7-150,SI20BZK7-25,SI--BZK4-40","SI20MBL8-10 FS,SI20BZK7D10# FF,SI20BZK7D10# SS","SI20MBL8-10,SI20BZK7D10#,SI20BZK7D10#",123,,124,,28,,28,,87,1056,"HK1003 -Blackpoint D2 - Rev.0E DD30092021"
1-4193,SI20BZK7F28,"CABLING GT TO EMERGENCY DIESEL",5121,"HK1003-Rev.0E-3",TT_Task,"55902",-,-,-,0,TK_NotStart,15/10/2022,,28/10/2022,,"SI20BZP7-100 FS,SI20BZP7-120 FS,SI20BZP7-184 FS,SI20XKA7-15 FS,SI20BZK7-25 FS","SI20BZP7-100,SI20BZP7-120,SI20BZP7-184,SI20XKA7-15,SI20BZK7-25","SI20XKA8-10 FS,SI20BZK7D10# FF,SI20BZK7D10# SS","SI20XKA8-10,SI20BZK7D10#,SI20BZK7D10#",115,,116,,26,,27,,83,1848,"HK1003 -Blackpoint D2 - Rev.0E DD30092021"
1-4194,SI20BZP7-184,"ERECTION CABLE TRAYS ON 20UBZ04",5121,"HK1003-Rev.0E-3",TT_Task,"55902",-,-,-,0,TK_NotStart,18/08/2022,,31/08/2022,,"SI20BZP7-120 FS,SI20UBZ5-68 FS","SI20BZP7-120,SI20UBZ5-68","SI20BZK7F28 FS","SI20BZK7F28",106,,108,,24,,25,,78,2200,"HK1003 -Blackpoint D2 - Rev.0E DD30092021"
1-4195,SI20BZP7-185,"ERECTION CABLE TRAYS 20UMC ST TO LDK",5121,"HK1003-Rev.0E-3",TT_Task,"55902",-,-,-,0,TK_NotStart,02/10/2022,,15/10/2022,,"SI20MA-6-50 FS,SI20MKA6-18 FS","SI20MA-6-50,SI20MKA6-18","SI20BZK7E25 FS","SI20BZK7E25",113,,115,,26,,26,,82,296,"HK1003 -Blackpoint D2 - Rev.0E DD30092021"
1-4196,SI20C--7L16,"ERECTION JUNCTION BOXES / INSTRUMENTATION",5121,"HK1003-Rev.0E-3",TT_Task,"55902",-,-,-,0,TK_NotStart,02/10/2022,,12/11/2022,,"SI20MA-6-50 FS,SI20MA-6-50 SS","SI20MA-6-50,SI20MA-6-50","SI20C--7L15 FF","SI20C--7L15",113,,119,,26,,27,,82,664,"HK1003 -Blackpoint D2 - Rev.0E DD30092021"
1-4197,SI20BZP7-186,"ERECTION JUNCTION BOXES & INSTRUMENTATION HRSG20",5121,"HK1003-Rev.0E-3",TT_Task,"55902",-,-,-,0,TK_NotStart,16/06/2022,,03/08/2022,,"SI20BZP7-125 FS","SI20BZP7-125","SI20BZK7-187 FS","SI20BZK7-187",97,,104,,22,,24,,70,1008,"HK1003 -Blackpoint D2 - Rev.0E DD30092021"
1-4198,SI20BZK7-187,"ERECTION CABLING HRSG TO CCR",5121,"HK1003-Rev.0E-3",TT_Task,"55902",-,-,-,0,TK_NotStart,01/11/2022,,21/11/2022,,"SI20LCL6B40 FS,SI--PEE7-20 FS,SI--PEE7-20 SS,SI20BZP7D18 FS,SI20BZP7D19 FS,SI20BZP7-174 FS,SI20UMY6M10 FS,SI20UMY6M11 FS,SI20UMY6M12 FS,SI--2227-68 FS,SI--BZP2-05 FS,SI--BZP4B40 FS,SI20BZP7-135 FS,SI20BZP7-60 FS,SI20BZP7B40 FS,SI20BZP7B42 FS,SI20BZP7-189 FS,SI20BZP7-186 FS","SI20LCL6B40,SI--PEE7-20,SI--PEE7-20,SI20BZP7D18,SI20BZP7D19,SI20BZP7-174,SI20UMY6M10,SI20UMY6M11,SI20UMY6M12,SI--2227-68,SI--BZP2-05,SI--BZP4B40,SI20BZP7-135,SI20BZP7-60,SI20BZP7B40,SI20BZP7B42,SI20BZP7-189,SI20BZP7-186","SI20MA-8-10 FS,SI20MBA8-10 FS,SI20BF-8-19 FS,SI-P222-161 FS","SI20MA-8-10,SI20MBA8-10,SI20BF-8-19,SI-P222-161",117,,120,,27,,28,,84,296,"HK1003 -Blackpoint D2 - Rev.0E DD30092021"
1-4199,SI20BZP7-189,"ERECTION JUNCTION BOXES & INSTRUMENTATION IN ULA",5121,"HK1003-Rev.0E-3",TT_Task,"55902",-,-,-,0,TK_NotStart,20/08/2022,,16/09/2022,,"SI20BZP7-135 FS","SI20BZP7-135","SI20BZK7-187 FS,SI20BZK7-190 FS","SI20BZK7-187,SI20BZK7-190",107,,110,,24,,25,,78,656,"HK1003 -Blackpoint D2 - Rev.0E DD30092021"
1-4200,SI20BZL7A18,"LIGHTING AND SMALL POWER INSTALLATION 01UBA9010/20",5121,"HK1003-Rev.0E-3",TT_Task,"55902",-,-,-,0,TK_NotStart,27/07/2022,,09/08/2022,,"SI20UBA7C-15 FS,SI--BZL4-40 FS","SI20UBA7C-15,SI--BZL4-40","SI20UBA7C-20 FS,SI20BZK7F29 FS","SI20UBA7C-20,SI20BZK7F29",103,,105,,24,,24,,75,1736,"HK1003 -Blackpoint D2 - Rev.0E DD30092021"
1-4201,SI20BZL7A19,"LIGHTING AND SMALL POWER INSTALLATION 20UBA1110/20",5121,"HK1003-Rev.0E-3",TT_Task,"55902",-,-,-,0,TK_NotStart,12/12/2022,,25/12/2022,,"SI20UBA7L15 FS,SI--BZL4-40 FS,SI20UBA5B-50 FS","SI20UBA7L15,SI--BZL4-40,SI20UBA5B-50","SI20UBA8-60 FS,SI20BZK7F29 FS","SI20UBA8-60,SI20BZK7F29",123,,125,,28,,29,,87,904,"HK1003 -Blackpoint D2 - Rev.0E DD30092021"
1-4202,SI20MKC8-77,"ENERGISATION START UP TRANSFORMER 20MBJ01",5121,"HK1003-Rev.0E-3",TT_Mile,"55902",-,-,-,0,TK_NotStart,12/04/2023,,12/04/2023,,"SI20M--8-68 FS,SI20M--8-68 SS,SI20CJT8-20 FS,SI20B--8-50 FS","SI20M--8-68,SI20M--8-68,SI20CJT8-20,SI20B--8-50","SI20MKA8-25 FS","SI20MKA8-25",140,,140,,32,,32,,95,304,"HK1003 -Blackpoint D2 - Rev.0E DD30092021"
1-4203,SI20M--8-68,"COLD COMMISSIONING START UP TRANSFORMER 20MBJ01",5121,"HK1003-Rev.0E-3",TT_Task,"55902",-,-,-,0,TK_NotStart,14/03/2023,,20/03/2023,,"SI-PM-40 FS,SI20BFT8-79 FS,SI20M--8-25 SS","SI-PM-40,SI20BFT8-79,SI20M--8-25","SI20MKC8-77 FS,SI20MKC8-77 SS,SI20B--8-50 FS","SI20MKC8-77,SI20MKC8-77,SI20B--8-50",136,,137,,31,,32,,92,184,"HK1003 -Blackpoint D2 - Rev.0E DD30092021"
1-4204,SI20BZP7-191,"ERECTION CABLE TRAYS ON 20UBZ03",5121,"HK1003-Rev.0E-3",TT_Task,"55902",-,-,-,0,TK_NotStart,14/08/2022,,23/08/2022,,"SI20BZP7-182 FS,SI--BZP4B40 FS,SI20BZP7-197 FS,CLP20UBZ5-76 FS","SI20BZP7-182,SI--BZP4B40,SI20BZP7-197,CLP20UBZ5-76","SI20BZK7B33 FS,SI20BZP7-5 FS","SI20BZK7B33,SI20BZP7-5",106,,107,,24,,25,,77,144,"HK1003 -Blackpoint D2 - Rev.0E DD30092021"
1-4205,SI20UBA7L16,"CABLING INTERNAL ELECTRICAL MODULES 20UBA1110/20 - BFT",5121,"HK1003-Rev.0E-3",TT_Task,"55902",-,-,-,0,TK_NotStart,12/12/2022,,25/12/2022,,"SI20UBA5B-50 FS,SI20BZK7-25 FS","SI20UBA5B-50,SI20BZK7-25","SI20BZK7D10# FF,SI20BZK7D10# SS,SI20BZK7-180 FS,SI20BZK7-200 FS,SI20BZK7-190 FS,SI20BZK7-190 FF,SI20BF-8-19 FS,SI20BF-8-19 FF","SI20BZK7D10#,SI20BZK7D10#,SI20BZK7-180,SI20BZK7-200,SI20BZK7-190,SI20BZK7-190,SI20BF-8-19,SI20BF-8-19",123,,125,,28,,29,,87,288,"HK1003 -Blackpoint D2 - Rev.0E DD30092021"
1-4206,SI20UBA7-105,"CABLING INTERNAL ELECTRICAL MODULES 20UBA8110/20 - BFT",5121,"HK1003-Rev.0E-3",TT_Task,"55902",-,-,-,0,TK_NotStart,12/12/2022,,25/12/2022,,"SI20UBA5B46 FS,SI20BZK7-25 FS,SI--BZK4-40 FS","SI20UBA5B46,SI20BZK7-25,SI--BZK4-40","SI20BZK7B24 FS,SI20SGY6-22 FS,SI20BZK7D10# FF,SI20BZK7D10# SS,SI20BZK7B46 FS,SI20BZK7B47 FS,SI20SGC6J16 SS,SI20SGM6-18 SS","SI20BZK7B24,SI20SGY6-22,SI20BZK7D10#,SI20BZK7D10#,SI20BZK7B46,SI20BZK7B47,SI20SGC6J16,SI20SGM6-18",123,,125,,28,,29,,87,80,"HK1003 -Blackpoint D2 - Rev.0E DD30092021"
1-4207,SI20UBA7C-32,"CABLING INTERNAL ELECTRICAL MODULES 01UBA9010/20 - PART OF ELECTRICAL MODULES ASSEMBLY",5121,"HK1003-Rev.0E-3",TT_Task,"55902",-,-,-,0,TK_NotStart,24/09/2022,,07/10/2022,,"SI20UBA5C-45 FS,SI20UBA5C-45 FF,SI20BZK7-25 FS","SI20UBA5C-45,SI20UBA5C-45,SI20BZK7-25","SI20SGM6-17 FS,SI20SGY7A17 FS,SI20BZK7B33 FS,SI20BZK7D10# FF,SI20BZK7D10# SS,SI20BZK7B41 FS,SI20BZK7B48 FS","SI20SGM6-17,SI20SGY7A17,SI20BZK7B33,SI20BZK7D10#,SI20BZK7D10#,SI20BZK7B41,SI20BZK7B48",112,,113,,26,,26,,81,392,"HK1003 -Blackpoint D2 - Rev.0E DD30092021"
1-4208,SI20PAD7-36,"E - AND I&C CABLING COOLING TOWER FIRST 4 CELLS 20PAD INCL. RISER",5121,"HK1003-Rev.0E-3",TT_Task,"55902",-,-,-,0,TK_NotStart,24/03/2023,,20/04/2023,,"SI20BZP7-145 FS","SI20BZP7-145","SI20PAD7-35 FS,SI20PAD8-10 FS","SI20PAD7-35,SI20PAD8-10",137,,141,,32,,33,,93,64,"HK1003 -Blackpoint D2 - Rev.0E DD30092021"
1-4209,SI20BZK7E26,"CABLING MODULES IN UMC BUILDING",5121,"HK1003-Rev.0E-3",TT_Task,"55902",-,-,-,0,TK_NotStart,11/12/2022,,07/01/2023,,"SI20BZP7-10 SS,SI20BZP7-165 SS,SI20BZK7-25 FS,SI20UMY6M10 FS,SI20UMY6M11 FS,SI20UMY6M12 FS,SI--2227-68 FS,SI--BZP2-05 FS,SI--PEE7-20 FS,SI--BZP4B40 FS,SI20BZP7-100 FS,SI20BZP7-110 FS,SI20BZP7-140 FS,SI20BZP7-150 FS,SI20BZP7-165 FS,SI20BZP7-183 FS,SI20BZP7-110 FF,SI20MKA6-18 FS,SI20MA-6-50 FS,SI--BZK4-40 FS","SI20BZP7-10,SI20BZP7-165,SI20BZK7-25,SI20UMY6M10,SI20UMY6M11,SI20UMY6M12,SI--2227-68,SI--BZP2-05,SI--PEE7-20,SI--BZP4B40,SI20BZP7-100,SI20BZP7-110,SI20BZP7-140,SI20BZP7-150,SI20BZP7-165,SI20BZP7-183,SI20BZP7-110,SI20MKA6-18,SI20MA-6-50,SI--BZK4-40","SI20BZK7D10# SS,SI20BZK7D10# FF,SI20MA-8-10 FS","SI20BZK7D10#,SI20BZK7D10#,SI20MA-8-10",123,,127,,28,,29,,87,776,"HK1003 -Blackpoint D2 - Rev.0E DD30092021"
1-4210,SI20BAW5C24,"ERECTION INDOOR EARTHING 20URD",5121,"HK1003-Rev.0E-3",TT_Task,"55902",-,-,-,0,TK_NotStart,15/07/2022,,08/09/2022,,"SI20BZP7-95 FF","SI20BZP7-95","SI20BAW5B15# SS,SI--BAW8-10 FS,SI--BAW7-55 FS,SI20BAW5B15# FF","SI20BAW5B15#,SI--BAW8-10,SI--BAW7-55,SI20BAW5B15#",101,,109,,23,,25,,73,2376,"HK1003 -Blackpoint D2 - Rev.0E DD30092021"
1-4211,SI20BFT4-27,"ERECTION MANUALS ON SITE SEE/SFC-TRANSFORMERS 20MKC / 20MBJ",5121,"HK1003-Rev.0E-3",TT_Mile,"55902",-,-,-,0,TK_NotStart,28/05/2022,,28/05/2022,,"SP20MKC3-25 FS","SP20MKC3-25","SI20BFT4-41 FS","SI20BFT4-41",95,,95,,22,,22,,66,640,"HK1003 -Blackpoint D2 - Rev.0E DD30092021"
1-4212,SI20BBT2-46,"ERECTION MANUALS ON SITE  AUX. TRANSFORMER 20BBT",5121,"HK1003-Rev.0E-3",TT_Mile,"55902",-,-,-,0,TK_NotStart,23/07/2022,,23/07/2022,,"SI20BBT3-25 FS","SI20BBT3-25","SI20BBT4-40 FS","SI20BBT4-40",103,,103,,24,,24,,75,584,"HK1003 -Blackpoint D2 - Rev.0E DD30092021"
1-4213,SI20BBT2-47,"ERECTION MANUALS ON SITE  SUMP PUMPS GM FOR UBF",5121,"HK1003-Rev.0E-3",TT_Mile,"55902",-,-,-,0,TK_NotStart,29/05/2022,,29/05/2022,,"SI--GM-3B80 FS","SI--GM-3B80","SI20GM-6B15 FS,SI20GM-6B15 SS","SI20GM-6B15,SI20GM-6B15",95,,95,,22,,22,,67,480,"HK1003 -Blackpoint D2 - Rev.0E DD30092021"
1-4214,SI20CFE2-90,"ERECTION MANUALS ON SITE EMISSION MONITORING SYSTEM CFE",5121,"HK1003-Rev.0E-3",TT_Mile,"55902",-,-,-,0,TK_NotStart,02/06/2022,,02/06/2022,,"SI20CFE3-25 FS","SI20CFE3-25","SI20CFE4-40 FS","SI20CFE4-40",95,,95,,22,,22,,68,1424,"HK1003 -Blackpoint D2 - Rev.0E DD30092021"
1-4215,SI20BZK7B34,"INSTALLATION OF I&C CABINETS",5121,"HK1003-Rev.0E-3",TT_Task,"55902",-,-,-,0,TK_NotStart,04/08/2022,,10/08/2022,,"SI20BZK7B36 FS","SI20BZK7B36","SI20BZK7B35 FS","SI20BZK7B35",104,,105,,24,,24,,76,1120,"HK1003 -Blackpoint D2 - Rev.0E DD30092021"
1-4216,SI20BZK7B35,"INSTALLATION OF CCR EQUIPMENT",5121,"HK1003-Rev.0E-3",TT_Task,"55902",-,-,-,0,TK_NotStart,11/08/2022,,17/08/2022,,"SI20BZK7B34 FS","SI20BZK7B34","SI20UBY5-62 FS","SI20UBY5-62",105,,106,,24,,24,,77,1120,"HK1003 -Blackpoint D2 - Rev.0E DD30092021"
1-4217,SI20BZK7B36,"INSTALLATION OF NEW MIMIC PANELS",5121,"HK1003-Rev.0E-3",TT_Task,"55902",-,-,-,0,TK_NotStart,30/07/2022,,03/08/2022,,"SI20BZK7B39 FS","SI20BZK7B39","SI20BZK7B34 FS","SI20BZK7B34",104,,104,,24,,24,,76,1120,"HK1003 -Blackpoint D2 - Rev.0E DD30092021"
1-4218,SI20UBY5-61,"SUPPORT INSTALLATION IN RAISED FLOOR",5121,"HK1003-Rev.0E-3",TT_Task,"55902",-,-,-,0,TK_NotStart,28/06/2022,,07/07/2022,,"SI20UCA7-15 SS","SI20UCA7-15","SI20BZK7B37 FS","SI20BZK7B37",99,,100,,23,,23,,71,1120,"HK1003 -Blackpoint D2 - Rev.0E DD30092021"
1-4219,SI20BZK7B37,"RELOCATION OF TABLES",5121,"HK1003-Rev.0E-3",TT_Task,"55902",-,-,-,0,TK_NotStart,08/07/2022,,17/07/2022,,"SI20UBY5-61 FS","SI20UBY5-61","SI20BZK7B38 FS","SI20BZK7B38",100,,102,,23,,23,,73,1120,"HK1003 -Blackpoint D2 - Rev.0E DD30092021"
1-4220,SI20BZK7B38,"SHIFTING OF BOARDS AND MIMICS",5121,"HK1003-Rev.0E-3",TT_Task,"55902",-,-,-,0,TK_NotStart,18/07/2022,,22/07/2022,,"SI20BZK7B37 FS","SI20BZK7B37","SI20BZK7B39 FS","SI20BZK7B39",102,,102,,23,,24,,74,1120,"HK1003 -Blackpoint D2 - Rev.0E DD30092021"
1-4221,SI20BZK7B39,"INSTALLATION OF NEW TABLES",5121,"HK1003-Rev.0E-3",TT_Task,"55902",-,-,-,0,TK_NotStart,23/07/2022,,29/07/2022,,"SI20BZK7B38 FS","SI20BZK7B38","SI20BZK7B36 FS","SI20BZK7B36",103,,103,,24,,24,,75,1120,"HK1003 -Blackpoint D2 - Rev.0E DD30092021"
1-4222,SI20UBY5-62,"CORE DRILLING WITHIN 10UCA",5121,"HK1003-Rev.0E-3",TT_Task,"55902",-,-,-,0,TK_NotStart,18/08/2022,,31/08/2022,,"SI20BZK7B35 FS","SI20BZK7B35","SI20BZK7B26 FS","SI20BZK7B26",106,,108,,24,,25,,78,1120,"HK1003 -Blackpoint D2 - Rev.0E DD30092021"
1-4223,SI20BZP7B40,"INSTALLATION OF CABLE TRAYS FOR EXTERNAL CONNECTION IN CONTROL BUILDING UCA",5121,"HK1003-Rev.0E-3",TT_Task,"55902",-,-,-,0,TK_NotStart,11/10/2022,,31/10/2022,,"SI20UCA7-16 FS,SI-----1-05 FS,SI--BZP4B41 FF","SI20UCA7-16,SI-----1-05,SI--BZP4B41","SI20BZK7B41 FS,SI20BZK7-187 FS,SI20BZK7B26 FS","SI20BZK7B41,SI20BZK7-187,SI20BZK7B26",114,,117,,26,,27,,83,296,"HK1003 -Blackpoint D2 - Rev.0E DD30092021"
1-4224,SI20BZK7B41,"CABLING FROM 00UCA TO D2 STATION",5121,"HK1003-Rev.0E-3",TT_Task,"55902",-,-,-,0,TK_NotStart,01/11/2022,,05/12/2022,,"SI20BZP7B40 FS,SI20UBA7C-32 FS,SI20UBA7-104 FS,SI20UBA7-36 FS,SI20UBA7-33 FS,SI20UBA7-30 FS,SI--BZK4-40 FS,SI20UBA7-108 FS","SI20BZP7B40,SI20UBA7C-32,SI20UBA7-104,SI20UBA7-36,SI20UBA7-33,SI20UBA7-30,SI--BZK4-40,SI20UBA7-108","SI20BZK7B42 FS","SI20BZK7B42",117,,122,,27,,28,,84,688,"HK1003 -Blackpoint D2 - Rev.0E DD30092021"
1-4225,SI20BZK7B42,"CABLING FROM 00UCA TO 400kV SUBSTATION",5121,"HK1003-Rev.0E-3",TT_Task,"55902",-,-,-,0,TK_NotStart,06/12/2022,,02/01/2023,,"SI20BZK7B41 FS,SI--BZK4-40 FS","SI20BZK7B41,SI--BZK4-40","SI20UBY5-63 FS,SI20B--8-50 FS","SI20UBY5-63,SI20B--8-50",122,,126,,28,,29,,86,688,"HK1003 -Blackpoint D2 - Rev.0E DD30092021"
1-4226,SI20UBY5-63,"FIRE BARRIER SEALING",5121,"HK1003-Rev.0E-3",TT_Task,"55902",-,-,-,0,TK_NotStart,03/01/2023,,16/01/2023,,"SI20BZK7B42 FS","SI20BZK7B42","SI20B--8-50 FS","SI20B--8-50",126,,128,,29,,29,,88,688,"HK1003 -Blackpoint D2 - Rev.0E DD30092021"
1-4227,SI20BZK7B43,"RELOCATION C4",5121,"HK1003-Rev.0E-3",TT_Task,"55902",-,-,-,100,TK_Complete,15/04/2021,15/04/2021,22/04/2021,22/04/2021,"SI20SD-310& SS","SI20SD-310&","SI20B--8-50 FS","SI20B--8-50",36,36,37,37,8,8,8,8,8,,"HK1003 -Blackpoint D2 - Rev.0E DD30092021"
1-4228,SI20BZK7B44,"RELOCATION C1",5121,"HK1003-Rev.0E-3",TT_Task,"55902",-,-,-,0,TK_NotStart,01/12/2021,,10/12/2021,,"SI20SD-315& SS","SI20SD-315&","SI20B--8-50 FS","SI20B--8-50",69,,70,,16,,16,,40,3904,"HK1003 -Blackpoint D2 - Rev.0E DD30092021"
1-4229,SI20BZK7B45,"RELOCATION C2 / C3",5121,"HK1003-Rev.0E-3",TT_Task,"55902",-,-,-,0,TK_NotStart,01/02/2022,,10/02/2022,,"SI20SD-320& SS,SI20SD-325& SS","SI20SD-320&,SI20SD-325&","SI20B--8-50 FS","SI20B--8-50",78,,79,,18,,18,,47,3408,"HK1003 -Blackpoint D2 - Rev.0E DD30092021"
1-4230,SI20PAD6-30,"MOBILISATION / MATERIAL UNLOADING",5121,"HK1003-Rev.0E-3",TT_Task,"55902",-,-,-,0,TK_NotStart,12/08/2022,,25/08/2022,,"SI20PAD4-40 FS,SI--PAD2-05 FS","SI20PAD4-40,SI--PAD2-05","SI20PAD6-31 FS,SI20PAD6-35 FS,SI20PAD6-35 FF,SI20PAD6-51 FS","SI20PAD6-31,SI20PAD6-35,SI20PAD6-35,SI20PAD6-51",105,,107,,24,,25,,77,64,"HK1003 -Blackpoint D2 - Rev.0E DD30092021"
1-4231,SI20PAD6-31,"FILL PACK GLUEING FIRST 4 CELLS",5121,"HK1003-Rev.0E-3",TT_Task,"55902",-,-,-,0,TK_NotStart,26/08/2022,,13/10/2022,,"SI20PAD6-30 FS,SI20URA5-45 FS,SI20PAD4-40 FS","SI20PAD6-30,SI20URA5-45,SI20PAD4-40","SI20PAD6-32 FS,SI20PAD6-33 FS,SI20PAD6-34 FF,SI20PAD6-36 FS,SI20PAD6-49 FF,SI20PAD6-49 SS,SI20PAD6-51 SS","SI20PAD6-32,SI20PAD6-33,SI20PAD6-34,SI20PAD6-36,SI20PAD6-49,SI20PAD6-49,SI20PAD6-51",107,,114,,25,,26,,79,120,"HK1003 -Blackpoint D2 - Rev.0E DD30092021"
1-4232,SI20PAD6-32,"DISTRIBUTION LATERAL PIPES FIRST 4 CELLS",5121,"HK1003-Rev.0E-3",TT_Task,"55902",-,-,-,0,TK_NotStart,14/10/2022,,17/11/2022,,"SI20PAD6-31 FS,SI20PAD4-47 FS,SI20PAD4-51 FS,SI20PAD4-47 FF","SI20PAD6-31,SI20PAD4-47,SI20PAD4-51,SI20PAD4-47","SI20PAD6-37 FS,SI20PAD6-49 FF,SI20PAD6-49 SS","SI20PAD6-37,SI20PAD6-49,SI20PAD6-49",114,,119,,26,,27,,83,232,"HK1003 -Blackpoint D2 - Rev.0E DD30092021"
1-4233,SI20PAD6-33,"DRIFT ELIMINATION ASSEMBLY FIRST 4 CELLS",5121,"HK1003-Rev.0E-3",TT_Task,"55902",-,-,-,0,TK_NotStart,14/10/2022,,17/11/2022,,"SI20PAD6-31 FS,SI20PAD4-47 FS,SI20PAD4-51 FS,SI20PAD4-47 FF","SI20PAD6-31,SI20PAD4-47,SI20PAD4-51,SI20PAD4-47","SI20PAD6-37 FS,SI20PAD6-49 FF,SI20PAD6-49 SS","SI20PAD6-37,SI20PAD6-49,SI20PAD6-49",114,,119,,26,,27,,83,232,"HK1003 -Blackpoint D2 - Rev.0E DD30092021"
1-4234,SI20PAD6-34,"INSTALLATION FILL PACKS SUPPORT FIRST 4 CELLS",5121,"HK1003-Rev.0E-3",TT_Task,"55902",-,-,-,0,TK_NotStart,30/09/2022,,20/10/2022,,"SI20PAD6-31 FF,SI20PAD6-35 FS","SI20PAD6-31,SI20PAD6-35","SI20PAD6-36 FS,SI20PAD6-38 FS,SI20PAD6-49 FF,SI20PAD6-49 SS","SI20PAD6-36,SI20PAD6-38,SI20PAD6-49,SI20PAD6-49",112,,115,,26,,27,,82,64,"HK1003 -Blackpoint D2 - Rev.0E DD30092021"
1-4235,SI20PAD6-35,"AUXILIARY FRP STUCTURE INSTALLATION FIRST 4 CELLS",5121,"HK1003-Rev.0E-3",TT_Task,"55902",-,-,-,0,TK_NotStart,26/08/2022,,29/09/2022,,"SI20PAD6-30 FS,SI20PAD6-30 FF,SI20URA5-45 FS,SI20PAD4-44 FS","SI20PAD6-30,SI20PAD6-30,SI20URA5-45,SI20PAD4-44","SI20PAD6-34 FS,SI20PAD6-49 FF,SI20PAD6-49 SS","SI20PAD6-34,SI20PAD6-49,SI20PAD6-49",107,,112,,25,,26,,79,64,"HK1003 -Blackpoint D2 - Rev.0E DD30092021"
1-4236,SI20PAD6-36,"INSTALLATION OF FILL PACKS FIRST 4 CELLS",5121,"HK1003-Rev.0E-3",TT_Task,"55902",-,-,-,0,TK_NotStart,21/10/2022,,08/12/2022,,"SI20PAD6-34 FS,SI20PAD6-31 FS","SI20PAD6-34,SI20PAD6-31","SI20PAD6-37 FS,SI20PAD6-40 FS,SI20PAD6-41 FS,SI20PAD6-49 FF,SI20PAD6-49 SS","SI20PAD6-37,SI20PAD6-40,SI20PAD6-41,SI20PAD6-49,SI20PAD6-49",115,,122,,27,,28,,83,64,"HK1003 -Blackpoint D2 - Rev.0E DD30092021"
1-4237,SI20PAD6-37,"INSTALLATION OF DISTRIBUTION SYSTEM FIRST 4 CELLS",5121,"HK1003-Rev.0E-3",TT_Task,"55902",-,-,-,0,TK_NotStart,09/12/2022,,26/01/2023,,"SI20PAD6-36 FS,SI20PAD6-33 FS,SI20PAD6-32 FS","SI20PAD6-36,SI20PAD6-33,SI20PAD6-32","SI20PAD6-39 FS,SI20PAD6-42 FS,SI20PAD6-49 FF,SI20PAD6-49 SS","SI20PAD6-39,SI20PAD6-42,SI20PAD6-49,SI20PAD6-49",122,,129,,28,,30,,86,64,"HK1003 -Blackpoint D2 - Rev.0E DD30092021"
1-4238,SI20PAD6-38,"INSTALLATION OF SOUND ABBATMENT SYSTEM FIRST 4 CELLS",5121,"HK1003-Rev.0E-3",TT_Task,"55902",-,-,-,0,TK_NotStart,21/10/2022,,24/11/2022,,"SI20PAD6-34 FS","SI20PAD6-34","SI20PAD6-44 FS,SI20PAD6-49 FF,SI20PAD6-49 SS,SI20UBA7-27 SS","SI20PAD6-44,SI20PAD6-49,SI20PAD6-49,SI20UBA7-27",115,,120,,27,,28,,83,80,"HK1003 -Blackpoint D2 - Rev.0E DD30092021"
1-4239,SI20PAD6-39,"INSTALLATION OF SUPPORT AND DRIFT ELIMINATOR FIRST 4 CELLS",5121,"HK1003-Rev.0E-3",TT_Task,"55902",-,-,-,0,TK_NotStart,27/01/2023,,02/03/2023,,"SI20PAD6-37 FS,SI20PAD4-47 FS","SI20PAD6-37,SI20PAD4-47","SI20PAD6-49 FF,SI20PAD6-49 SS,SI20PAD8-10 FS","SI20PAD6-49,SI20PAD6-49,SI20PAD8-10",129,,134,,30,,31,,89,680,"HK1003 -Blackpoint D2 - Rev.0E DD30092021"
1-4240,SI20PAD6-40,"INSTALLATION OF AIR MIX SYSTEM FIRST 4 CELLS",5121,"HK1003-Rev.0E-3",TT_Task,"55902",-,-,-,0,TK_NotStart,09/12/2022,,26/01/2023,,"SI20PAD6-36 FS","SI20PAD6-36","SI20PAD6-49 FF,SI20PAD6-49 SS,SI20PAD8-10 FS","SI20PAD6-49,SI20PAD6-49,SI20PAD8-10",122,,129,,28,,30,,86,960,"HK1003 -Blackpoint D2 - Rev.0E DD30092021"
1-4241,SI20PAD6-41,"INSTALLATION OF INTERNAL WALKWAY FIRST 4 CELLS",5121,"HK1003-Rev.0E-3",TT_Task,"55902",-,-,-,0,TK_NotStart,09/12/2022,,05/01/2023,,"SI20PAD6-36 FS,SI20PAD4-51 FS","SI20PAD6-36,SI20PAD4-51","SI20PAD6-49 FF,SI20PAD6-49 SS,SI20PAD8-10 FS","SI20PAD6-49,SI20PAD6-49,SI20PAD8-10",122,,126,,28,,29,,86,1128,"HK1003 -Blackpoint D2 - Rev.0E DD30092021"
1-4242,SI20PAD6-42,"INSTALLATION OF MECHANICAL GROUP FIRST 4 CELLS",5121,"HK1003-Rev.0E-3",TT_Task,"55902",-,-,-,0,TK_NotStart,27/01/2023,,23/02/2023,,"SI20PAD6-37 FS,SI20PAD4-61 FS","SI20PAD6-37,SI20PAD4-61","SI20PAD6-43 SS,SI20PAD6-49 FF,SI20PAD6-49 SS,SI20PAD8-10 FS","SI20PAD6-43,SI20PAD6-49,SI20PAD6-49,SI20PAD8-10",129,,133,,30,,31,,89,64,"HK1003 -Blackpoint D2 - Rev.0E DD30092021"
1-4243,SI20PAD6-43,"INSTALLATION OF FAN STACK FIRST 4 CELLS",5121,"HK1003-Rev.0E-3",TT_Task,"55902",-,-,-,0,TK_NotStart,17/02/2023,,23/03/2023,,"SI20PAD6-42 SS,SI20PAD4-61 FS","SI20PAD6-42,SI20PAD4-61","SI20PAD6-49 FF,SI20PAD6-49 SS,SI20PAD8-10 FS,SI20BZP7-145 SS,SI20BAW5C22 FS","SI20PAD6-49,SI20PAD6-49,SI20PAD8-10,SI20BZP7-145,SI20BAW5C22",132,,137,,31,,32,,91,64,"HK1003 -Blackpoint D2 - Rev.0E DD30092021"
1-4244,SI20PAD6-44,"INSTALLATION OF COIL BUNDLES AND SEALING FIRST 4 CELLS",5121,"HK1003-Rev.0E-3",TT_Task,"55902",-,-,-,0,TK_NotStart,25/11/2022,,22/12/2022,,"SI20PAD6-38 FS,SI20URA3-25 FS","SI20PAD6-38,SI20URA3-25","SI20PAD6-45 FS,SI20PAD6-47 FS,SI20PAD6-49 FF,SI20PAD6-49 SS","SI20PAD6-45,SI20PAD6-47,SI20PAD6-49,SI20PAD6-49",120,,124,,28,,29,,85,680,"HK1003 -Blackpoint D2 - Rev.0E DD30092021"
1-4245,SI20PAD6-45,"INSTALLATION OF VACUUM PIPE LINE FIRST 4 CELLS",5121,"HK1003-Rev.0E-3",TT_Task,"55902",-,-,-,0,TK_NotStart,07/01/2023,,10/02/2023,,"SI20PAD6-44 FS,SI20PAD6-46 FS,SI20PAD4-63 FS","SI20PAD6-44,SI20PAD6-46,SI20PAD4-63","SI20PAD6-48 FS,SI20PAD6-49 FF,SI20PAD6-49 SS,SI20PAD8-10 FS","SI20PAD6-48,SI20PAD6-49,SI20PAD6-49,SI20PAD8-10",127,,131,,29,,30,,88,560,"HK1003 -Blackpoint D2 - Rev.0E DD30092021"
1-4246,SI20PAD6-46,"INSTALLATION OF VACUUM SKID FIRST 4 CELLS",5121,"HK1003-Rev.0E-3",TT_Task,"55902",-,-,-,0,TK_NotStart,26/12/2022,,27/12/2022,,"SI20PAD4-63 FS","SI20PAD4-63","SI20PAD6-45 FS,SI20PAD6-49 FF,SI20PAD6-49 SS,SI20PAD6-64 FS","SI20PAD6-45,SI20PAD6-49,SI20PAD6-49,SI20PAD6-64",125,,125,,29,,29,,87,560,"HK1003 -Blackpoint D2 - Rev.0E DD30092021"
1-4247,SI20PAD6-47,"INSTALLATION OF DUMPERS WITH ACTUATORS FIRST 4 CELLS",5121,"HK1003-Rev.0E-3",TT_Task,"55902",-,-,-,0,TK_NotStart,23/12/2022,,12/01/2023,,"SI20PAD6-44 FS","SI20PAD6-44","SI20PAD6-49 FF,SI20PAD6-49 SS,SI20PAD8-10 FS","SI20PAD6-49,SI20PAD6-49,SI20PAD8-10",124,,127,,29,,29,,87,1072,"HK1003 -Blackpoint D2 - Rev.0E DD30092021"
1-4248,SI20PAD6-48,"INSTALLATION OF PIPING DRY AREA FIRST 4 CELLS",5121,"HK1003-Rev.0E-3",TT_Task,"55902",-,-,-,0,TK_NotStart,11/02/2023,,17/03/2023,,"SI20PAD6-45 FS,SI20PAD4-55 FS","SI20PAD6-45,SI20PAD4-55","SI20PAD6-49 FF,SI20PAD6-49 SS,SI20PAD8-10 FS","SI20PAD6-49,SI20PAD6-49,SI20PAD8-10",132,,136,,30,,31,,90,560,"HK1003 -Blackpoint D2 - Rev.0E DD30092021"
1-4249,SI20PAD6-51,"FILL PACK GLUEING LAST 4 CELLS",5121,"HK1003-Rev.0E-3",TT_Task,"55902",-,-,-,0,TK_NotStart,26/09/2022,,13/11/2022,,"SI20PAD6-30 FS,SI20PAD6-31 SS,SI20URA5E45 FS,SI20PAD4-42 FS","SI20PAD6-30,SI20PAD6-31,SI20URA5E45,SI20PAD4-42","SI20PAD6-55 FS,SI20PAD6-56 FS,SI20PAD6-54 FF,SI20PAD6-57 FS,SI20PAD6-53 FF,SI20PAD6-53 SS,SI20PAD6-52 SS","SI20PAD6-55,SI20PAD6-56,SI20PAD6-54,SI20PAD6-57,SI20PAD6-53,SI20PAD6-53,SI20PAD6-52",112,,119,,26,,27,,82,64,"HK1003 -Blackpoint D2 - Rev.0E DD30092021"
1-4250,SI20PAD6-55,"DISTRIBUTION LATERAL PIPES LAST 4 CELLS",5121,"HK1003-Rev.0E-3",TT_Task,"55902",-,-,-,0,TK_NotStart,14/11/2022,,18/12/2022,,"SI20PAD6-51 FS,SI20PAD4-50 FS","SI20PAD6-51,SI20PAD4-50","SI20PAD6-61 FS,SI20PAD6-53 FF,SI20PAD6-53 SS","SI20PAD6-61,SI20PAD6-53,SI20PAD6-53",119,,124,,27,,28,,85,232,"HK1003 -Blackpoint D2 - Rev.0E DD30092021"
1-4251,SI20PAD6-56,"DRIFT ELIMINATION ASSEMBLY LAST 4 CELLS",5121,"HK1003-Rev.0E-3",TT_Task,"55902",-,-,-,0,TK_NotStart,14/11/2022,,18/12/2022,,"SI20PAD6-51 FS,SI20PAD4-50 FS","SI20PAD6-51,SI20PAD4-50","SI20PAD6-61 FS,SI20PAD6-53 FF,SI20PAD6-53 SS","SI20PAD6-61,SI20PAD6-53,SI20PAD6-53",119,,124,,27,,28,,85,232,"HK1003 -Blackpoint D2 - Rev.0E DD30092021"
1-4252,SI20PAD6-54,"INSTALLATION FILL PACKS SUPPORT LAST 4 CELLS",5121,"HK1003-Rev.0E-3",TT_Task,"55902",-,-,-,0,TK_NotStart,31/10/2022,,20/11/2022,,"SI20PAD6-51 FF,SI20PAD6-52 FS","SI20PAD6-51,SI20PAD6-52","SI20PAD6-57 FS,SI20PAD6-58 FS,SI20PAD6-53 FF,SI20PAD6-53 SS","SI20PAD6-57,SI20PAD6-58,SI20PAD6-53,SI20PAD6-53",117,,120,,27,,28,,84,64,"HK1003 -Blackpoint D2 - Rev.0E DD30092021"
1-4253,SI20PAD6-52,"AUXILIARY FRP STUCTURE INSTALLATION LAST 4 CELLS",5121,"HK1003-Rev.0E-3",TT_Task,"55902",-,-,-,0,TK_NotStart,26/09/2022,,30/10/2022,,"SI20PAD6-51 SS,SI20PAD4-45 FS","SI20PAD6-51,SI20PAD4-45","SI20PAD6-54 FS,SI20PAD6-53 FF,SI20PAD6-53 SS","SI20PAD6-54,SI20PAD6-53,SI20PAD6-53",112,,117,,26,,27,,82,64,"HK1003 -Blackpoint D2 - Rev.0E DD30092021"
1-4254,SI20PAD6-57,"INSTALLATION OF FILL PACKS LAST 4 CELLS",5121,"HK1003-Rev.0E-3",TT_Task,"55902",-,-,-,0,TK_NotStart,21/11/2022,,08/01/2023,,"SI20PAD6-54 FS,SI20PAD6-51 FS","SI20PAD6-54,SI20PAD6-51","SI20PAD6-61 FS,SI20PAD6-62 FS,SI20PAD6-63 FS,SI20PAD6-53 FF,SI20PAD6-53 SS","SI20PAD6-61,SI20PAD6-62,SI20PAD6-63,SI20PAD6-53,SI20PAD6-53",120,,127,,28,,29,,85,64,"HK1003 -Blackpoint D2 - Rev.0E DD30092021"
1-4255,SI20PAD6-61,"INSTALLATION OF DISTRIBUTION SYSTEM LAST 4 CELLS",5121,"HK1003-Rev.0E-3",TT_Task,"55902",-,-,-,0,TK_NotStart,09/01/2023,,26/02/2023,,"SI20PAD6-57 FS,SI20PAD6-56 FS,SI20PAD6-55 FS","SI20PAD6-57,SI20PAD6-56,SI20PAD6-55","SI20PAD6-67 FS,SI20PAD6-68 FS,SI20PAD6-53 FF,SI20PAD6-53 SS","SI20PAD6-67,SI20PAD6-68,SI20PAD6-53,SI20PAD6-53",127,,134,,29,,31,,88,64,"HK1003 -Blackpoint D2 - Rev.0E DD30092021"
1-4256,SI20PAD6-58,"INSTALLATION OF SOUND ABBATMENT SYSTEM LAST 4 CELLS",5121,"HK1003-Rev.0E-3",TT_Task,"55902",-,-,-,0,TK_NotStart,21/11/2022,,25/12/2022,,"SI20PAD6-54 FS","SI20PAD6-54","SI20PAD6-59 FS,SI20PAD6-53 FF,SI20PAD6-53 SS","SI20PAD6-59,SI20PAD6-53,SI20PAD6-53",120,,125,,28,,29,,85,432,"HK1003 -Blackpoint D2 - Rev.0E DD30092021"
1-4257,SI20PAD6-67,"INSTALLATION OF SUPPORT AND DRIFT ELIMINATOR LAST 4 CELLS",5121,"HK1003-Rev.0E-3",TT_Task,"55902",-,-,-,0,TK_NotStart,27/02/2023,,02/04/2023,,"SI20PAD6-61 FS,SI20PAD4-50 FS","SI20PAD6-61,SI20PAD4-50","SI20PAD6-53 FF,SI20PAD6-53 SS,SI20PAD8-10 FS","SI20PAD6-53,SI20PAD6-53,SI20PAD8-10",134,,139,,31,,32,,92,432,"HK1003 -Blackpoint D2 - Rev.0E DD30092021"
1-4258,SI20PAD6-62,"INSTALLATION OF AIR MIX SYSTEM LAST 4 CELLS",5121,"HK1003-Rev.0E-3",TT_Task,"55902",-,-,-,0,TK_NotStart,09/01/2023,,26/02/2023,,"SI20PAD6-57 FS","SI20PAD6-57","SI20PAD6-53 FF,SI20PAD6-53 SS,SI20PAD8-10 FS","SI20PAD6-53,SI20PAD6-53,SI20PAD8-10",127,,134,,29,,31,,88,712,"HK1003 -Blackpoint D2 - Rev.0E DD30092021"
1-4259,SI20PAD6-63,"INSTALLATION OF INTERNAL WALKWAY LAST 4 CELLS",5121,"HK1003-Rev.0E-3",TT_Task,"55902",-,-,-,0,TK_NotStart,09/01/2023,,05/02/2023,,"SI20PAD6-57 FS,SI20PAD4-53 FS","SI20PAD6-57,SI20PAD4-53","SI20PAD6-53 FF,SI20PAD6-53 SS,SI20PAD8-10 FS","SI20PAD6-53,SI20PAD6-53,SI20PAD8-10",127,,131,,29,,30,,88,880,"HK1003 -Blackpoint D2 - Rev.0E DD30092021"
1-4260,SI20PAD6-68,"INSTALLATION OF MECHANICAL GROUP LAST 4 CELLS",5121,"HK1003-Rev.0E-3",TT_Task,"55902",-,-,-,0,TK_NotStart,27/02/2023,,26/03/2023,,"SI20PAD6-61 FS,SI20PAD4-62 FS","SI20PAD6-61,SI20PAD4-62","SI20PAD6-69 SS,SI20PAD6-53 FF,SI20PAD6-53 SS,SI20PAD8-10 FS","SI20PAD6-69,SI20PAD6-53,SI20PAD6-53,SI20PAD8-10",134,,138,,31,,32,,92,64,"HK1003 -Blackpoint D2 - Rev.0E DD30092021"
1-4261,SI20PAD6-69,"INSTALLATION OF FAN STACK LAST 4 CELLS",5121,"HK1003-Rev.0E-3",TT_Task,"55902",-,-,-,0,TK_NotStart,20/03/2023,,23/04/2023,,"SI20PAD6-68 SS,SI20PAD4-62 FS","SI20PAD6-68,SI20PAD4-62","SI20PAD6-53 FF,SI20PAD6-53 SS,SI20PAD8-10 FS,SI20BZP7-155 SS,SI20PAD7-33 FS","SI20PAD6-53,SI20PAD6-53,SI20PAD8-10,SI20BZP7-155,SI20PAD7-33",137,,142,,32,,33,,93,64,"HK1003 -Blackpoint D2 - Rev.0E DD30092021"
1-4262,SI20PAD6-59,"INSTALLATION OF COIL BUNDLES AND SEALING LAST 4 CELLS",5121,"HK1003-Rev.0E-3",TT_Task,"55902",-,-,-,0,TK_NotStart,26/12/2022,,22/01/2023,,"SI20PAD6-58 FS","SI20PAD6-58","SI20PAD6-64 FS,SI20PAD6-65 FS,SI20PAD6-53 FF,SI20PAD6-53 SS","SI20PAD6-64,SI20PAD6-65,SI20PAD6-53,SI20PAD6-53",125,,129,,29,,30,,87,432,"HK1003 -Blackpoint D2 - Rev.0E DD30092021"
1-4263,SI20PAD6-64,"INSTALLATION OF VACUUM PIPE LINE LAST 4 CELLS",5121,"HK1003-Rev.0E-3",TT_Task,"55902",-,-,-,0,TK_NotStart,23/01/2023,,26/02/2023,,"SI20PAD6-59 FS,SI20PAD6-46 FS,SI20PAD4-63 FS","SI20PAD6-59,SI20PAD6-46,SI20PAD4-63","SI20PAD6-66 FS,SI20PAD6-53 FF,SI20PAD6-53 SS,SI20PAD8-10 FS","SI20PAD6-66,SI20PAD6-53,SI20PAD6-53,SI20PAD8-10",129,,134,,30,,31,,89,432,"HK1003 -Blackpoint D2 - Rev.0E DD30092021"
1-4264,SI20PAD6-65,"INSTALLATION OF DUMPERS WITH ACTUATORS LAST 4 CELLS",5121,"HK1003-Rev.0E-3",TT_Task,"55902",-,-,-,0,TK_NotStart,23/01/2023,,12/02/2023,,"SI20PAD6-59 FS","SI20PAD6-59","SI20PAD6-53 FF,SI20PAD6-53 SS,SI20PAD8-10 FS","SI20PAD6-53,SI20PAD6-53,SI20PAD8-10",129,,132,,30,,30,,89,824,"HK1003 -Blackpoint D2 - Rev.0E DD30092021"
1-4265,SI20PAD6-66,"INSTALLATION OF PIPING DRY AREA LAST 4 CELLS",5121,"HK1003-Rev.0E-3",TT_Task,"55902",-,-,-,0,TK_NotStart,27/02/2023,,02/04/2023,,"SI20PAD6-64 FS,SI20PAD4-56 FS","SI20PAD6-64,SI20PAD4-56","SI20PAD6-53 FF,SI20PAD6-53 SS,SI20PAD8-10 FS","SI20PAD6-53,SI20PAD6-53,SI20PAD8-10",134,,139,,31,,32,,92,432,"HK1003 -Blackpoint D2 - Rev.0E DD30092021"
1-4266,SI--B--2-93,"100% CABLE PULLING DATA TRANSFER TO SITE",5121,"HK1003-Rev.0E-3",TT_Mile,"55902",-,-,-,0,TK_NotStart,31/01/2022,,31/01/2022,,"SI--B--2-68 FS","SI--B--2-68","SI--B--7-55 FS,SI20MBA8-10 FS,SI20BZK7L25 FS,SI20BAW5A15 FS,SI20BZK7A26 FS,SI20UMC5D50 FS,SI20BZK7B32 FS,SI20BZK7F26 FS,SI--2222-35 FS,SI--2226-55 FS,SI20CPC8-10 FS,SI20CPB8-25 FS,SI20BZK7A27 FS,SI20MKA8-10 FS,SI20BZK7F25 FS,SI20SGJ6A15 FS,SI20MKC8-75 FS,SI20UBA8-12 FS,SI20BZK7B26 FS,SI--BRU8-22 FS,SI20BBA8-10 FS,SI20UBA7-17 FS,SI20CHA8-10 FS,SI20BZK7A25 FS,SI20BZK7C25 FS,SI20BZK7-28 FS,SI20BZK7-25 FS,SI20CJ-8-10 FS,SI20BZK7C33 FS,SI20BZK7E25 FS,SI20CFE7A25 FS,SI20UBA8-11 FS,SI20BZK7D25 FS,SI20BZK7B24 FS,SI20BFC8-10 FS,SI20CPD8-11 FS,SI20SGC6J15 FS,SI20UBA7-25 FS,SI20UBA7-104 FS,SI20CR-8-10 FS,SI20BFA8-10 FS,SI20BZK7B27 FS,SI20MKC8-76 FS","SI--B--7-55,SI20MBA8-10,SI20BZK7L25,SI20BAW5A15,SI20BZK7A26,SI20UMC5D50,SI20BZK7B32,SI20BZK7F26,SI--2222-35,SI--2226-55,SI20CPC8-10,SI20CPB8-25,SI20BZK7A27,SI20MKA8-10,SI20BZK7F25,SI20SGJ6A15,SI20MKC8-75,SI20UBA8-12,SI20BZK7B26,SI--BRU8-22,SI20BBA8-10,SI20UBA7-17,SI20CHA8-10,SI20BZK7A25,SI20BZK7C25,SI20BZK7-28,SI20BZK7-25,SI20CJ-8-10,SI20BZK7C33,SI20BZK7E25,SI20CFE7A25,SI20UBA8-11,SI20BZK7D25,SI20BZK7B24,SI20BFC8-10,SI20CPD8-11,SI20SGC6J15,SI20UBA7-25,SI20UBA7-104,SI20CR-8-10,SI20BFA8-10,SI20BZK7B27,SI20MKC8-76",78,,78,,18,,18,,47,696,"HK1003 -Blackpoint D2 - Rev.0E DD30092021"
1-4267,SI20UMC5E48,"(RFE) LDK PLATFORM IN 20UMC",5121,"HK1003-Rev.0E-3",TT_FinMile,"55902",-,-,-,0,TK_NotStart,01/06/2022,,01/06/2022,,"SI20UMC5E47 FS","SI20UMC5E47","SI20UMC5B15# FF,SI20PGB6M16 FS,SI20PGB6M15 FS,SI20PCB6M16 FS,SI20UMC5C15 FS,SI20UMC6A-15 FS","SI20UMC5B15#,SI20PGB6M16,SI20PGB6M15,SI20PCB6M16,SI20UMC5C15,SI20UMC6A-15",95,,95,,22,,22,,67,1104,"HK1003 -Blackpoint D2 - Rev.0E DD30092021"
1-4268,SI20UMC5E47,"ERECTION LDK PLATFORM IN 20UMC",5121,"HK1003-Rev.0E-3",TT_Task,"55902",-,-,-,0,TK_NotStart,05/05/2022,,01/06/2022,,"SI20UMC3E25 FS,SI20UMC5B15 SS,SI20LDK6M15 FS","SI20UMC3E25,SI20UMC5B15,SI20LDK6M15","SI20UMC5E48 FS,SI20UMC5B15# FF,SI20UMC5B15# SS,SI20MAJ6-25 FS,SI20UMC6B-70 SS","SI20UMC5E48,SI20UMC5B15#,SI20UMC5B15#,SI20MAJ6-25,SI20UMC6B-70",91,,95,,21,,22,,63,896,"HK1003 -Blackpoint D2 - Rev.0E DD30092021"
1-4269,SI20UMC5E50,"(RFE) GENERATOR PLATFORM @5.44m IN 20UMC",5121,"HK1003-Rev.0E-3",TT_FinMile,"55902",-,-,-,0,TK_NotStart,30/07/2022,,30/07/2022,,"SI20UMC5E49 FS","SI20UMC5E49","SI20UMC5B15# FF,SI20BZP7-100 FS,SI20MB-6A15 FS,SI20PGB6H15 FS,SI20SGA6-15 FS","SI20UMC5B15#,SI20BZP7-100,SI20MB-6A15,SI20PGB6H15,SI20SGA6-15",104,,104,,24,,24,,76,664,"HK1003 -Blackpoint D2 - Rev.0E DD30092021"
1-4270,SI20UMC5E49,"ERECTION GENERATOR PLATFORM @5.44m IN 20UMC",5121,"HK1003-Rev.0E-3",TT_Task,"55902",-,-,-,0,TK_NotStart,26/06/2022,,30/07/2022,,"SI20UMC3E25 FS,SI20UMC5B15 FS,SI20UMC3E25 FF,SI20UMC5B15 FF,SI20MAW6-16 SS","SI20UMC3E25,SI20UMC5B15,SI20UMC3E25,SI20UMC5B15,SI20MAW6-16","SI20UMC5E50 FS,SI20UMC5B15# FF,SI20UMC5B15# SS","SI20UMC5E50,SI20UMC5B15#,SI20UMC5B15#",99,,104,,23,,24,,71,664,"HK1003 -Blackpoint D2 - Rev.0E DD30092021"
1-4271,SI20UMC5E52,"(RFE) GENERATOR MISC. PLATFORM 1 @5.87m IN 20UMC",5121,"HK1003-Rev.0E-3",TT_FinMile,"55902",-,-,-,0,TK_NotStart,10/04/2022,,10/04/2022,,"SI20UMC5E51 FS","SI20UMC5E51","SI20UMC5E53 FS,SI20UMC5B15# FF,SI20UMC5C15 FS,SI20UMC6-15 FS","SI20UMC5E53,SI20UMC5B15#,SI20UMC5C15,SI20UMC6-15",88,,88,,20,,20,,57,1328,"HK1003 -Blackpoint D2 - Rev.0E DD30092021"
1-4272,SI20UMC5E51,"ERECTION GENERATOR MISC. PLATFORM 1 @5.87m IN 20UMC",5121,"HK1003-Rev.0E-3",TT_Task,"55902",-,-,-,0,TK_NotStart,14/03/2022,,10/04/2022,,"SI20UMC3E25 FS,SI20UMC5B15 SS","SI20UMC3E25,SI20UMC5B15","SI20UMC5E52 FS,SI20UMC5E57 SS,SI20UMC5B15# FF,SI20UMC5B15# SS","SI20UMC5E52,SI20UMC5E57,SI20UMC5B15#,SI20UMC5B15#",84,,88,,19,,20,,52,448,"HK1003 -Blackpoint D2 - Rev.0E DD30092021"
1-4273,SI20UMC5E54,"(RFE) GENERATOR MISC. PLATFORM 2 @6.56m IN 20UMC",5121,"HK1003-Rev.0E-3",TT_FinMile,"55902",-,-,-,0,TK_NotStart,08/05/2022,,08/05/2022,,"SI20UMC5E53 FS","SI20UMC5E53","SI20UMC5B15# FF,SI20BZP7-100 FS,SI20MB-6A15 FS,SI20PGB6H15 FS,SI20SGA6-15 FS,SI20UMC5C15 FS","SI20UMC5B15#,SI20BZP7-100,SI20MB-6A15,SI20PGB6H15,SI20SGA6-15,SI20UMC5C15",92,,92,,21,,21,,63,1328,"HK1003 -Blackpoint D2 - Rev.0E DD30092021"
1-4274,SI20UMC5E53,"ERECTION GENERATOR MISC. PLATFORM 2 @6.56m IN 20UMC",5121,"HK1003-Rev.0E-3",TT_Task,"55902",-,-,-,0,TK_NotStart,11/04/2022,,08/05/2022,,"SI20UMC3E25 FS,SI20UMC5B15 FS,SI20UMC5E52 FS","SI20UMC3E25,SI20UMC5B15,SI20UMC5E52","SI20UMC5E54 FS,SI20UMC5B15# FF,SI20UMC5B15# SS","SI20UMC5E54,SI20UMC5B15#,SI20UMC5B15#",88,,92,,20,,21,,57,1328,"HK1003 -Blackpoint D2 - Rev.0E DD30092021"
1-4275,SI20UMC5E56,"(RFE) STEAM TURBINE PLATFORM @5.44m IN 20UMC",5121,"HK1003-Rev.0E-3",TT_FinMile,"55902",-,-,-,0,TK_NotStart,19/06/2022,,19/06/2022,,"SI20UMC5E55 FS","SI20UMC5E55","SI20UMC5B15# FF,SI20BZP7-110 FS,SI20LCB6B15 FS,SI20MA-6A10 FS,SI20UMC5C15 FS","SI20UMC5B15#,SI20BZP7-110,SI20LCB6B15,SI20MA-6A10,SI20UMC5C15",98,,98,,22,,22,,70,456,"HK1003 -Blackpoint D2 - Rev.0E DD30092021"
1-4276,SI20UMC5E55,"ERECTION STEAM TURBINE PLATFORM @5.44m IN 20UMC",5121,"HK1003-Rev.0E-3",TT_Task,"55902",-,-,-,0,TK_NotStart,16/05/2022,,19/06/2022,,"SI20MAW6M11 FS,SI20UMC3E25 FS,SI20UMC5B15 FS,SI20MAW6M10 FS,SI20LBG6C15 SS","SI20MAW6M11,SI20UMC3E25,SI20UMC5B15,SI20MAW6M10,SI20LBG6C15","SI20UMC5E56 FS,SI20UMC5B15# FF,SI20UMC5B15# SS","SI20UMC5E56,SI20UMC5B15#,SI20UMC5B15#",93,,98,,21,,22,,65,456,"HK1003 -Blackpoint D2 - Rev.0E DD30092021"
1-4277,SI20UMC5E58,"(RFE) STEAM TURBINE MISC. PLATFORM 1 @6.56m IN 20UMC",5121,"HK1003-Rev.0E-3",TT_FinMile,"55902",-,-,-,0,TK_NotStart,10/04/2022,,10/04/2022,,"SI20UMC5E57 FS","SI20UMC5E57","SI20UMC5E59 FS,SI20UMC5B15# FF,SI20UMC6M15 FS,SI20UMC5C15 FS,SI20UMC6-15 FS","SI20UMC5E59,SI20UMC5B15#,SI20UMC6M15,SI20UMC5C15,SI20UMC6-15",88,,88,,20,,20,,57,448,"HK1003 -Blackpoint D2 - Rev.0E DD30092021"
1-4278,SI20UMC5E57,"ERECTION STEAM TURBINE MISC. PLATFORM 1 @6.56m IN 20UMC",5121,"HK1003-Rev.0E-3",TT_Task,"55902",-,-,-,0,TK_NotStart,14/03/2022,,10/04/2022,,"SI20UMC3E25 FS,SI20UMC5B15 SS,SI20UMC5E51 SS,SI20UMC3E28 FS","SI20UMC3E25,SI20UMC5B15,SI20UMC5E51,SI20UMC3E28","SI20UMC5E58 FS,SI20UMC5B15# FF,SI20UMC5B15# SS","SI20UMC5E58,SI20UMC5B15#,SI20UMC5B15#",84,,88,,19,,20,,52,448,"HK1003 -Blackpoint D2 - Rev.0E DD30092021"
1-4279,SI20UMC5E60,"(RFE) STEAM TURBINE MISC. PLATFORM 2 @8.07m IN 20UMC",5121,"HK1003-Rev.0E-3",TT_FinMile,"55902",-,-,-,0,TK_NotStart,08/05/2022,,08/05/2022,,"SI20UMC5E59 FS","SI20UMC5E59","SI20UMC5E61 FS,SI20UMC5B15# FF,SI20BZP7-110 FS,SI20MA-6A10 FS,SI20UMC5C15 FS","SI20UMC5E61,SI20UMC5B15#,SI20BZP7-110,SI20MA-6A10,SI20UMC5C15",92,,92,,21,,21,,64,504,"HK1003 -Blackpoint D2 - Rev.0E DD30092021"
1-4280,SI20UMC5E59,"ERECTION STEAM TURBINE MISC. PLATFORM 2 @8.07m IN 20UMC",5121,"HK1003-Rev.0E-3",TT_Task,"55902",-,-,-,0,TK_NotStart,11/04/2022,,08/05/2022,,"SI20UMC3E25 FS,SI20UMC5B15 FS,SI20UMC5E58 FS,SI20UMC3E28 FS","SI20UMC3E25,SI20UMC5B15,SI20UMC5E58,SI20UMC3E28","SI20UMC5E60 FS,SI20UMC5B15# FF,SI20UMC5B15# SS","SI20UMC5E60,SI20UMC5B15#,SI20UMC5B15#",88,,92,,20,,21,,57,504,"HK1003 -Blackpoint D2 - Rev.0E DD30092021"
1-4281,SI20PAD3-81,"MANUFACTURING COOLING TOWER - FILL - 20PAD",5121,"HK1003-Rev.0E-3",TT_Task,"55902",-,-,-,0,TK_NotStart,04/01/2022,,27/06/2022,,"SI20PAD3-24 FS,SI20PAD3-102 FS","SI20PAD3-24,SI20PAD3-102","SI20PAD3B70 FS,SI20PAD3B71 FS,SI20PAD3-25# FF,SI20PAD3-25# SS","SI20PAD3B70,SI20PAD3B71,SI20PAD3-25#,SI20PAD3-25#",74,,99,,17,,23,,44,64,"HK1003 -Blackpoint D2 - Rev.0E DD30092021"
1-4282,SI20PAD3-82,"MANUFACTURING COOLING TOWER - FRP - 20PAD",5121,"HK1003-Rev.0E-3",TT_Task,"55902",-,-,-,0,TK_NotStart,04/01/2022,,27/07/2022,,"SI20PAD3-24 FS,SI20PAD3-103 FS","SI20PAD3-24,SI20PAD3-103","SI20PAD3B72 FS,SI20PAD3B73 FS,SI20PAD3-25# FF,SI20PAD3-25# SS","SI20PAD3B72,SI20PAD3B73,SI20PAD3-25#,SI20PAD3-25#",74,,103,,17,,24,,44,64,"HK1003 -Blackpoint D2 - Rev.0E DD30092021"
1-4283,SI20PAD3-83,"MANUFACTURING COOLING TOWER - NOISE ATT / PIPING / DRIFT ELIM - 20PAD",5121,"HK1003-Rev.0E-3",TT_Task,"55902",-,-,-,0,TK_NotStart,04/01/2022,,27/07/2022,,"SI20PAD3-24 FS,SI20PAD3-106 FS","SI20PAD3-24,SI20PAD3-106","SI20PAD3B74 FS,SI20PAD3B75 FS,SI20PAD3-25# FF,SI20PAD3-25# SS","SI20PAD3B74,SI20PAD3B75,SI20PAD3-25#,SI20PAD3-25#",74,,103,,17,,24,,44,384,"HK1003 -Blackpoint D2 - Rev.0E DD30092021"
1-4284,SI20PAD3-84,"MANUFACTURING COOLING TOWER - WALKWAY - 20PAD",5121,"HK1003-Rev.0E-3",TT_Task,"55902",-,-,-,0,TK_NotStart,04/01/2022,,26/08/2022,,"SI20PAD3-24 FS,SI20PAD3-107 FS","SI20PAD3-24,SI20PAD3-107","SI20PAD3B76 FS,SI20PAD3B77 FS,SI20PAD3-25# FF,SI20PAD3-25# SS","SI20PAD3B76,SI20PAD3B77,SI20PAD3-25#,SI20PAD3-25#",74,,107,,17,,25,,44,384,"HK1003 -Blackpoint D2 - Rev.0E DD30092021"
1-4285,SI20PAD3-85,"MANUFACTURING COOLING TOWER - DRY EQUIPMENT & ELECTRICAL - 20PAD",5121,"HK1003-Rev.0E-3",TT_Task,"55902",-,-,-,0,TK_NotStart,04/01/2022,,26/09/2022,,"SI20PAD3-24 FS,SI20PAD3-109 FS","SI20PAD3-24,SI20PAD3-109","SI20PAD3B78 FS,SI20PAD3B79 FS,SI20PAD3-25# FF,SI20PAD3-25# SS","SI20PAD3B78,SI20PAD3B79,SI20PAD3-25#,SI20PAD3-25#",74,,112,,17,,26,,44,936,"HK1003 -Blackpoint D2 - Rev.0E DD30092021"
1-4286,SI20PAD3-86,"MANUFACTURING COOLING TOWER - MECH. EQUIPMENT & FANSTACK - 20PAD",5121,"HK1003-Rev.0E-3",TT_Task,"55902",-,-,-,0,TK_NotStart,29/03/2022,,27/11/2022,,"SI20PAD3-24 FS,SI-P222-64 FF,SI20PAD3-111 FS","SI20PAD3-24,SI-P222-64,SI20PAD3-111","SI20PAD3B80 FS,SI20PAD3B81 FS,SI20PAD3-25# FF,SI20PAD3-25# SS","SI20PAD3B80,SI20PAD3B81,SI20PAD3-25#,SI20PAD3-25#",86,,121,,20,,28,,54,72,"HK1003 -Blackpoint D2 - Rev.0E DD30092021"
1-4287,SI20PAD3-87,"MANUFACTURING COOLING TOWER - VACUUM SKID & PIPING - 20PAD",5121,"HK1003-Rev.0E-3",TT_Task,"55902",-,-,-,0,TK_NotStart,01/02/2022,,26/09/2022,,"SI20PAD3-24 FS,SI20PAD3-113 FS","SI20PAD3-24,SI20PAD3-113","SI20PAD3B82 FS,SI20PAD3-25# FF,SI20PAD3-25# SS","SI20PAD3B82,SI20PAD3-25#,SI20PAD3-25#",78,,112,,18,,26,,47,560,"HK1003 -Blackpoint D2 - Rev.0E DD30092021"
1-4288,SI20PAD4-42,"(OTD-OS) ON SITE 20PAD FILL BATCH 2",5121,"HK1003-Rev.0E-3",TT_FinMile,"55902",-,-,-,0,TK_NotStart,25/09/2022,,25/09/2022,,"SI20PAD4-41 FS","SI20PAD4-41","SI20PAD6-51 FS","SI20PAD6-51",112,,112,,26,,26,,82,64,"HK1003 -Blackpoint D2 - Rev.0E DD30092021"
1-4289,SI20PAD3-88,"(RFS) READY FOR SHIPMENT COOLING TOWER EQUIPMENT (EU) 20PAD FILL BATCH 2",5121,"HK1003-Rev.0E-3",TT_FinMile,"55902",-,-,-,0,TK_NotStart,25/07/2022,,25/07/2022,,"SI20PAD4B11 FS","SI20PAD4B11","SI20PAD4-41 FS","SI20PAD4-41",103,,103,,24,,24,,75,64,"HK1003 -Blackpoint D2 - Rev.0E DD30092021"
1-4290,SI20PAD4-41,"TRANSPORT (EU)  20PAD FILL BATCH 2",5121,"HK1003-Rev.0E-3",TT_Task,"55902",-,-,-,0,TK_NotStart,26/07/2022,,25/09/2022,,"SI20PAD3-88 FS","SI20PAD3-88","SI20PAD4-42 FS","SI20PAD4-42",103,,112,,24,,26,,75,64,"HK1003 -Blackpoint D2 - Rev.0E DD30092021"
1-4291,SI20PAD4B11,"LOGISTICS AND CUSTOMS PREPARATION - (EU)  20PAD FILL BATCH 2",5121,"HK1003-Rev.0E-3",TT_Task,"55902",-,-,-,0,TK_NotStart,28/06/2022,,25/07/2022,,"SI20PAD3B71 FS","SI20PAD3B71","SI20PAD3-88 FS","SI20PAD3-88",99,,103,,23,,24,,71,64,"HK1003 -Blackpoint D2 - Rev.0E DD30092021"
1-4292,SI20PAD3B71,"TIMES OF COMPLETION (FINAL DATA IN KANLOG) -  (EU) 20PAD FILL BATCH 2",5121,"HK1003-Rev.0E-3",TT_FinMile,"55902",-,-,-,0,TK_NotStart,27/06/2022,,27/06/2022,,"SI20PAD3-81 FS","SI20PAD3-81","SI20PAD4B11 FS","SI20PAD4B11",99,,99,,23,,23,,71,64,"HK1003 -Blackpoint D2 - Rev.0E DD30092021"
1-4293,SI20PAD4-44,"(OTD-OS) ON SITE 20PAD FRP BATCH 1",5121,"HK1003-Rev.0E-3",TT_FinMile,"55902",-,-,-,0,TK_NotStart,17/08/2022,,17/08/2022,,"SI20PAD4-43 FS","SI20PAD4-43","SI20PAD6-35 FS","SI20PAD6-35",106,,106,,24,,24,,78,128,"HK1003 -Blackpoint D2 - Rev.0E DD30092021"
1-4294,SI20PAD3-89,"(RFS) READY FOR SHIPMENT COOLING TOWER EQUIPMENT 20PAD FRP BATCH 1",5121,"HK1003-Rev.0E-3",TT_FinMile,"55902",-,-,-,0,TK_NotStart,23/07/2022,,23/07/2022,,"SI20PAD4B12 FS","SI20PAD4B12","SI20PAD4-43 FS","SI20PAD4-43",103,,103,,24,,24,,75,128,"HK1003 -Blackpoint D2 - Rev.0E DD30092021"
1-4295,SI20PAD4-43,"TRANSPORT  20PAD FRP BATCH 1",5121,"HK1003-Rev.0E-3",TT_Task,"55902",-,-,-,0,TK_NotStart,24/07/2022,,17/08/2022,,"SI20PAD3-89 FS","SI20PAD3-89","SI20PAD4-44 FS","SI20PAD4-44",103,,106,,24,,24,,75,128,"HK1003 -Blackpoint D2 - Rev.0E DD30092021"
1-4296,SI20PAD4B12,"LOGISTICS AND CUSTOMS PREPARATION -  20PAD FRP BATCH 1",5121,"HK1003-Rev.0E-3",TT_Task,"55902",-,-,-,0,TK_NotStart,26/06/2022,,23/07/2022,,"SI20PAD3B72 FS","SI20PAD3B72","SI20PAD3-89 FS","SI20PAD3-89",99,,103,,23,,24,,71,128,"HK1003 -Blackpoint D2 - Rev.0E DD30092021"
1-4297,SI20PAD3B72,"TIMES OF COMPLETION (FINAL DATA IN KANLOG) -  20PAD FRP BATCH 1",5121,"HK1003-Rev.0E-3",TT_FinMile,"55902",-,-,-,0,TK_NotStart,26/06/2022,,26/06/2022,,"SI20PAD3-82 FS","SI20PAD3-82","SI20PAD4B12 FS","SI20PAD4B12",99,,99,,23,,23,,71,128,"HK1003 -Blackpoint D2 - Rev.0E DD30092021"
1-4298,SI20PAD4-45,"(OTD-OS) ON SITE 20PAD FRP BATCH 2",5121,"HK1003-Rev.0E-3",TT_FinMile,"55902",-,-,-,0,TK_NotStart,25/09/2022,,25/09/2022,,"SI20PAD4-46 FS","SI20PAD4-46","SI20PAD6-52 FS","SI20PAD6-52",112,,112,,26,,26,,82,64,"HK1003 -Blackpoint D2 - Rev.0E DD30092021"
1-4299,SI20PAD3-90,"(RFS) READY FOR SHIPMENT COOLING TOWER EQUIPMENT 20PAD FRP BATCH 2",5121,"HK1003-Rev.0E-3",TT_FinMile,"55902",-,-,-,0,TK_NotStart,24/08/2022,,24/08/2022,,"SI20PAD4B13 FS","SI20PAD4B13","SI20PAD4-46 FS","SI20PAD4-46",107,,107,,25,,25,,78,64,"HK1003 -Blackpoint D2 - Rev.0E DD30092021"
1-4300,SI20PAD4-46,"TRANSPORT  20PAD FRP BATCH 2",5121,"HK1003-Rev.0E-3",TT_Task,"55902",-,-,-,0,TK_NotStart,25/08/2022,,25/09/2022,,"SI20PAD3-90 FS","SI20PAD3-90","SI20PAD4-45 FS","SI20PAD4-45",107,,112,,25,,26,,79,64,"HK1003 -Blackpoint D2 - Rev.0E DD30092021"
1-4301,SI20PAD4B13,"LOGISTICS AND CUSTOMS PREPARATION -  20PAD FRP BATCH 2",5121,"HK1003-Rev.0E-3",TT_Task,"55902",-,-,-,0,TK_NotStart,28/07/2022,,24/08/2022,,"SI20PAD3B73 FS","SI20PAD3B73","SI20PAD3-90 FS","SI20PAD3-90",103,,107,,24,,25,,75,64,"HK1003 -Blackpoint D2 - Rev.0E DD30092021"
1-4302,SI20PAD3B73,"TIMES OF COMPLETION (FINAL DATA IN KANLOG) -  20PAD FRP BATCH 2",5121,"HK1003-Rev.0E-3",TT_FinMile,"55902",-,-,-,0,TK_NotStart,27/07/2022,,27/07/2022,,"SI20PAD3-82 FS","SI20PAD3-82","SI20PAD4B13 FS","SI20PAD4B13",103,,103,,24,,24,,75,64,"HK1003 -Blackpoint D2 - Rev.0E DD30092021"
1-4303,SI20PAD4-47,"(OTD-OS) ON SITE 20PAD NOISE ATT / PIPING / DRIFT ELIM BATCH 1",5121,"HK1003-Rev.0E-3",TT_FinMile,"55902",-,-,-,0,TK_NotStart,24/09/2022,,24/09/2022,,"SI20PAD4-48 FS","SI20PAD4-48","SI20PAD6-32 FS,SI20PAD6-33 FS,SI20PAD6-39 FS,SI20PAD6-33 FF,SI20PAD6-32 FF","SI20PAD6-32,SI20PAD6-33,SI20PAD6-39,SI20PAD6-33,SI20PAD6-32",112,,112,,26,,26,,81,384,"HK1003 -Blackpoint D2 - Rev.0E DD30092021"
1-4304,SI20PAD3-91,"(RFS) READY FOR SHIPMENT COOLING TOWER EQUIPMENT (EU) 20PAD NOISE ATT / PIPING / DRIFT ELIM BATCH 1",5121,"HK1003-Rev.0E-3",TT_FinMile,"55902",-,-,-,0,TK_NotStart,24/07/2022,,24/07/2022,,"SI20PAD4B14 FS","SI20PAD4B14","SI20PAD4-48 FS","SI20PAD4-48",103,,103,,24,,24,,75,384,"HK1003 -Blackpoint D2 - Rev.0E DD30092021"
1-4305,SI20PAD4-48,"TRANSPORT (EU) 20PAD NOISE ATT / PIPING / DRIFT ELIM BATCH 1",5121,"HK1003-Rev.0E-3",TT_Task,"55902",-,-,-,0,TK_NotStart,25/07/2022,,24/09/2022,,"SI20PAD3-91 FS","SI20PAD3-91","SI20PAD4-47 FS","SI20PAD4-47",103,,112,,24,,26,,75,384,"HK1003 -Blackpoint D2 - Rev.0E DD30092021"
1-4306,SI20PAD4B14,"LOGISTICS AND CUSTOMS PREPARATION - (EU) 20PAD NOISE ATT / PIPING / DRIFT ELIM BATCH 1",5121,"HK1003-Rev.0E-3",TT_Task,"55902",-,-,-,0,TK_NotStart,27/06/2022,,24/07/2022,,"SI20PAD3B74 FS","SI20PAD3B74","SI20PAD3-91 FS","SI20PAD3-91",99,,103,,23,,24,,71,384,"HK1003 -Blackpoint D2 - Rev.0E DD30092021"
1-4307,SI20PAD3B74,"TIMES OF COMPLETION (FINAL DATA IN KANLOG) - (EU) 20PAD NOISE ATT / PIPING / DRIFT ELIM BATCH 1",5121,"HK1003-Rev.0E-3",TT_FinMile,"55902",-,-,-,0,TK_NotStart,27/06/2022,,27/06/2022,,"SI20PAD3-83 FS","SI20PAD3-83","SI20PAD4B14 FS","SI20PAD4B14",99,,99,,23,,23,,71,384,"HK1003 -Blackpoint D2 - Rev.0E DD30092021"
1-4308,SI20PAD4-50,"(OTD-OS) ON SITE 20PAD NOISE ATT / PIPING / DRIFT ELIM BATCH 2",5121,"HK1003-Rev.0E-3",TT_FinMile,"55902",-,-,-,0,TK_NotStart,25/10/2022,,25/10/2022,,"SI20PAD4-49 FS","SI20PAD4-49","SI20PAD6-55 FS,SI20PAD6-56 FS,SI20PAD6-67 FS","SI20PAD6-55,SI20PAD6-56,SI20PAD6-67",116,,116,,27,,27,,84,384,"HK1003 -Blackpoint D2 - Rev.0E DD30092021"
1-4309,SI20PAD3-92,"(RFS) READY FOR SHIPMENT COOLING TOWER EQUIPMENT (EU) 20PAD NOISE ATT / PIPING / DRIFT ELIM BATCH 2",5121,"HK1003-Rev.0E-3",TT_FinMile,"55902",-,-,-,0,TK_NotStart,24/08/2022,,24/08/2022,,"SI20PAD4B15 FS","SI20PAD4B15","SI20PAD4-49 FS","SI20PAD4-49",107,,107,,25,,25,,78,384,"HK1003 -Blackpoint D2 - Rev.0E DD30092021"
1-4310,SI20PAD4-49,"TRANSPORT (EU) 20PAD NOISE ATT / PIPING / DRIFT ELIM BATCH 2",5121,"HK1003-Rev.0E-3",TT_Task,"55902",-,-,-,0,TK_NotStart,25/08/2022,,25/10/2022,,"SI20PAD3-92 FS","SI20PAD3-92","SI20PAD4-50 FS","SI20PAD4-50",107,,116,,25,,27,,79,384,"HK1003 -Blackpoint D2 - Rev.0E DD30092021"
1-4311,SI20PAD4B15,"LOGISTICS AND CUSTOMS PREPARATION - (EU) 20PAD NOISE ATT / PIPING / DRIFT ELIM BATCH 2",5121,"HK1003-Rev.0E-3",TT_Task,"55902",-,-,-,0,TK_NotStart,28/07/2022,,24/08/2022,,"SI20PAD3B75 FS","SI20PAD3B75","SI20PAD3-92 FS","SI20PAD3-92",103,,107,,24,,25,,75,384,"HK1003 -Blackpoint D2 - Rev.0E DD30092021"
1-4312,SI20PAD3B75,"TIMES OF COMPLETION (FINAL DATA IN KANLOG) - (EU) 20PAD NOISE ATT / PIPING / DRIFT ELIM BATCH 2",5121,"HK1003-Rev.0E-3",TT_FinMile,"55902",-,-,-,0,TK_NotStart,27/07/2022,,27/07/2022,,"SI20PAD3-83 FS","SI20PAD3-83","SI20PAD4B15 FS","SI20PAD4B15",103,,103,,24,,24,,75,384,"HK1003 -Blackpoint D2 - Rev.0E DD30092021"
1-4313,SI20PAD4-51,"(OTD-OS) ON SITE 20PAD WALKWAY BATCH 1",5121,"HK1003-Rev.0E-3",TT_FinMile,"55902",-,-,-,0,TK_NotStart,24/09/2022,,24/09/2022,,"SI20PAD4-52 FS","SI20PAD4-52","SI20PAD6-32 FS,SI20PAD6-33 FS,SI20PAD6-41 FS","SI20PAD6-32,SI20PAD6-33,SI20PAD6-41",112,,112,,26,,26,,81,384,"HK1003 -Blackpoint D2 - Rev.0E DD30092021"
1-4314,SI20PAD3-93,"(RFS) READY FOR SHIPMENT COOLING TOWER EQUIPMENT 20PAD WALKWAY BATCH 1",5121,"HK1003-Rev.0E-3",TT_FinMile,"55902",-,-,-,0,TK_NotStart,23/08/2022,,23/08/2022,,"SI20PAD4B16 FS","SI20PAD4B16","SI20PAD4-52 FS","SI20PAD4-52",107,,107,,25,,25,,78,384,"HK1003 -Blackpoint D2 - Rev.0E DD30092021"
1-4315,SI20PAD4-52,"TRANSPORT  20PAD WALKWAY BATCH 1",5121,"HK1003-Rev.0E-3",TT_Task,"55902",-,-,-,0,TK_NotStart,24/08/2022,,24/09/2022,,"SI20PAD3-93 FS","SI20PAD3-93","SI20PAD4-51 FS","SI20PAD4-51",107,,112,,25,,26,,78,384,"HK1003 -Blackpoint D2 - Rev.0E DD30092021"
1-4316,SI20PAD4B16,"LOGISTICS AND CUSTOMS PREPARATION -  20PAD WALKWAY BATCH 1",5121,"HK1003-Rev.0E-3",TT_Task,"55902",-,-,-,0,TK_NotStart,27/07/2022,,23/08/2022,,"SI20PAD3B76 FS","SI20PAD3B76","SI20PAD3-93 FS","SI20PAD3-93",103,,107,,24,,25,,75,384,"HK1003 -Blackpoint D2 - Rev.0E DD30092021"
1-4317,SI20PAD3B76,"TIMES OF COMPLETION (FINAL DATA IN KANLOG) -  20PAD WALKWAY BATCH 1",5121,"HK1003-Rev.0E-3",TT_FinMile,"55902",-,-,-,0,TK_NotStart,27/07/2022,,27/07/2022,,"SI20PAD3-84 FS","SI20PAD3-84","SI20PAD4B16 FS","SI20PAD4B16",103,,103,,24,,24,,75,384,"HK1003 -Blackpoint D2 - Rev.0E DD30092021"
1-4318,SI20PAD4-53,"(OTD-OS) ON SITE 20PAD WALKWAY BATCH 2",5121,"HK1003-Rev.0E-3",TT_FinMile,"55902",-,-,-,0,TK_NotStart,25/10/2022,,25/10/2022,,"SI20PAD4-54 FS","SI20PAD4-54","SI20PAD6-63 FS","SI20PAD6-63",116,,116,,27,,27,,84,1480,"HK1003 -Blackpoint D2 - Rev.0E DD30092021"
1-4319,SI20PAD3-94,"(RFS) READY FOR SHIPMENT COOLING TOWER EQUIPMENT 20PAD WALKWAY BATCH 2",5121,"HK1003-Rev.0E-3",TT_FinMile,"55902",-,-,-,0,TK_NotStart,23/09/2022,,23/09/2022,,"SI20PAD4B17 FS","SI20PAD4B17","SI20PAD4-54 FS","SI20PAD4-54",111,,111,,26,,26,,81,1480,"HK1003 -Blackpoint D2 - Rev.0E DD30092021"
1-4320,SI20PAD4-54,"TRANSPORT  20PAD WALKWAY BATCH 2",5121,"HK1003-Rev.0E-3",TT_Task,"55902",-,-,-,0,TK_NotStart,24/09/2022,,25/10/2022,,"SI20PAD3-94 FS","SI20PAD3-94","SI20PAD4-53 FS","SI20PAD4-53",112,,116,,26,,27,,81,1480,"HK1003 -Blackpoint D2 - Rev.0E DD30092021"
1-4321,SI20PAD4B17,"LOGISTICS AND CUSTOMS PREPARATION -  20PAD WALKWAY BATCH 2",5121,"HK1003-Rev.0E-3",TT_Task,"55902",-,-,-,0,TK_NotStart,27/08/2022,,23/09/2022,,"SI20PAD3B77 FS","SI20PAD3B77","SI20PAD3-94 FS","SI20PAD3-94",108,,111,,25,,26,,79,1480,"HK1003 -Blackpoint D2 - Rev.0E DD30092021"
1-4322,SI20PAD3B77,"TIMES OF COMPLETION (FINAL DATA IN KANLOG) -  20PAD WALKWAY BATCH 2",5121,"HK1003-Rev.0E-3",TT_FinMile,"55902",-,-,-,0,TK_NotStart,26/08/2022,,26/08/2022,,"SI20PAD3-84 FS","SI20PAD3-84","SI20PAD4B17 FS","SI20PAD4B17",107,,107,,25,,25,,79,1480,"HK1003 -Blackpoint D2 - Rev.0E DD30092021"
1-4323,SI20UMC5E62,"(RFE) STEAM TURBINE MISC. PLATFORM 3 @10.09m IN 20UMC",5121,"HK1003-Rev.0E-3",TT_FinMile,"55902",-,-,-,0,TK_NotStart,13/06/2022,,13/06/2022,,"SI20UMC5E61 FS","SI20UMC5E61","SI20UMC5B15# FF,SI20BZP7-110 FS,SI20MA-6A10 FS,SI20UMC5C15 FS","SI20UMC5B15#,SI20BZP7-110,SI20MA-6A10,SI20UMC5C15",97,,97,,22,,22,,69,504,"HK1003 -Blackpoint D2 - Rev.0E DD30092021"
1-4324,SI20UMC5E61,"ERECTION STEAM TURBINE MISC. PLATFORM 3 @10.09m IN 20UMC",5121,"HK1003-Rev.0E-3",TT_Task,"55902",-,-,-,0,TK_NotStart,17/05/2022,,13/06/2022,,"SI20UMC3E25 FS,SI20UMC5B15 FS,SI20UMC5E60 FS,SI20UMC3E28 FS","SI20UMC3E25,SI20UMC5B15,SI20UMC5E60,SI20UMC3E28","SI20UMC5E62 FS,SI20UMC5B15# FF,SI20UMC5B15# SS,SI20UMC6A-10 SS","SI20UMC5E62,SI20UMC5B15#,SI20UMC5B15#,SI20UMC6A-10",93,,97,,21,,22,,65,504,"HK1003 -Blackpoint D2 - Rev.0E DD30092021"
1-4325,SI20UMC5E64,"(RFE) STEAM TURBINE MISC. PLATFORM 4 @12.75m IN 20UMC",5121,"HK1003-Rev.0E-3",TT_FinMile,"55902",-,-,-,0,TK_NotStart,09/06/2022,,09/06/2022,,"SI20UMC5E63 FS","SI20UMC5E63","SI20UMC5B15# FF,SI20BZP7-110 FS,SI20MA-6A10 FS,SI20UMC5C15 FS","SI20UMC5B15#,SI20BZP7-110,SI20MA-6A10,SI20UMC5C15",96,,96,,22,,22,,69,536,"HK1003 -Blackpoint D2 - Rev.0E DD30092021"
1-4326,SI20UMC5E63,"ERECTION STEAM TURBINE MISC. PLATFORM 4 @12.75m IN 20UMC",5121,"HK1003-Rev.0E-3",TT_Task,"55902",-,-,-,0,TK_NotStart,13/05/2022,,09/06/2022,,"SI20MAW6M10 FS,SI20UMC3E25 FS,SI20UMC5B15 FS,SI20UMC3E28 FS","SI20MAW6M10,SI20UMC3E25,SI20UMC5B15,SI20UMC3E28","SI20UMC5E64 FS,SI20UMC5B15# FF,SI20UMC5B15# SS","SI20UMC5E64,SI20UMC5B15#,SI20UMC5B15#",92,,96,,21,,22,,64,536,"HK1003 -Blackpoint D2 - Rev.0E DD30092021"
1-4327,SI20UMC5E66,"(RFE) LP TURBINE PLATFORM @6.00m IN 20UMC (1st PART BEFORE ST BEARINGS)",5121,"HK1003-Rev.0E-3",TT_FinMile,"55902",-,-,-,0,TK_NotStart,13/05/2022,,13/05/2022,,"SI20UMC5E65 FS","SI20UMC5E65","SI20MA-6-03 FS,SI20UMC5B15# FF,SI20MA-6A10 FS,SI20UMC5C15 FS","SI20MA-6-03,SI20UMC5B15#,SI20MA-6A10,SI20UMC5C15",92,,92,,21,,21,,64,296,"HK1003 -Blackpoint D2 - Rev.0E DD30092021"
1-4328,SI20UMC5E65,"ERECTION LP TURBINE PLATFORM @6.00m IN 20UMC (1st PART BEFORE ST BEARINGS)",5121,"HK1003-Rev.0E-3",TT_Task,"55902",-,-,-,0,TK_NotStart,23/04/2022,,13/05/2022,,"SI20UMC3E25 FS,SI20UMC5B15 FS,SI20UMC3E28 FS","SI20UMC3E25,SI20UMC5B15,SI20UMC3E28","SI20UMC5E66 FS,SI20UMC5B15# FF,SI20UMC5B15# SS","SI20UMC5E66,SI20UMC5B15#,SI20UMC5B15#",90,,92,,21,,21,,59,296,"HK1003 -Blackpoint D2 - Rev.0E DD30092021"
1-4329,SI20UMC5E68,"(RFE) LP TURBINE PLATFORM @6.00m IN 20UMC (2nd PART AFTER UPY PLACING)",5121,"HK1003-Rev.0E-3",TT_FinMile,"55902",-,-,-,0,TK_NotStart,10/09/2022,,10/09/2022,,"SI20UMC5E67 FS","SI20UMC5E67","SI20UMC5B15# FF,SI20PAH6H15 FS,SI20UPY6M11 FF,SI20BZP7-110 FS","SI20UMC5B15#,SI20PAH6H15,SI20UPY6M11,SI20BZP7-110",110,,110,,25,,25,,80,472,"HK1003 -Blackpoint D2 - Rev.0E DD30092021"
1-4330,SI20UMC5E67,"ERECTION LP TURBINE PLATFORM @6.00m IN 20UMC (2nd PART AFTER UPY PLACING)",5121,"HK1003-Rev.0E-3",TT_Task,"55902",-,-,-,0,TK_NotStart,21/08/2022,,10/09/2022,,"SI20UMC3E25 FS,SI20UMC5B15 FS,SI20UPY6M10 SS,SI20UMC3E28 FS","SI20UMC3E25,SI20UMC5B15,SI20UPY6M10,SI20UMC3E28","SI20UMC5E68 FS,SI20UMC5B15# FF,SI20UMC5B15# SS","SI20UMC5E68,SI20UMC5B15#,SI20UMC5B15#",107,,110,,25,,25,,78,472,"HK1003 -Blackpoint D2 - Rev.0E DD30092021"
1-4331,SI20UMC5E70,"(RFE) CRANE MAINTENANCE PLATFORM @15.30m IN 20UMC",5121,"HK1003-Rev.0E-3",TT_FinMile,"55902",-,-,-,0,TK_NotStart,03/04/2022,,03/04/2022,,"SI20UMC5E69 FS","SI20UMC5E69","SI20SMM6-15 FS,SI20UMC5B15# FF,SI20UMC5C15 FS,SI20UMC6-15 FS","SI20SMM6-15,SI20UMC5B15#,SI20UMC5C15,SI20UMC6-15",87,,87,,20,,20,,55,96,"HK1003 -Blackpoint D2 - Rev.0E DD30092021"
1-4332,SI20UMC5E69,"ERECTION CRANE MAINTENANCE PLATFORM @15.30m IN 20UMC",5121,"HK1003-Rev.0E-3",TT_Task,"55902",-,-,-,0,TK_NotStart,21/02/2022,,03/04/2022,,"SI20UMC5B15 SS,SI20UMC3E26 FS,SI20UMC2B72 FS","SI20UMC5B15,SI20UMC3E26,SI20UMC2B72","SI20UMC5E70 FS,SI20UMC5B15# FF,SI20UMC5B15# SS","SI20UMC5E70,SI20UMC5B15#,SI20UMC5B15#",81,,87,,18,,20,,50,96,"HK1003 -Blackpoint D2 - Rev.0E DD30092021"
1-4333,SI20UMC5E72,"(RFE) CONDENSER PLATFORM @15.37m",5121,"HK1003-Rev.0E-3",TT_FinMile,"55902",-,-,-,0,TK_NotStart,24/09/2022,,24/09/2022,,"SI20UMC5E71 FS","SI20UMC5E71","SI20UMC5B15# FF,SI20PAH6H15 FS,SI20UPY6M11 FF,SI20BZP7-110 FS","SI20UMC5B15#,SI20PAH6H15,SI20UPY6M11,SI20BZP7-110",112,,112,,26,,26,,81,360,"HK1003 -Blackpoint D2 - Rev.0E DD30092021"
1-4334,SI20UMC5E71,"ERECTION CONDENSER PLATFORM @15.37m IN 20UMC",5121,"HK1003-Rev.0E-3",TT_Task,"55902",-,-,-,0,TK_NotStart,21/08/2022,,24/09/2022,,"SI20UMC3E25 FS,SI20UMC5B15 FS,SI20UPY6M10 SS,SI20UMC3E28 FS","SI20UMC3E25,SI20UMC5B15,SI20UPY6M10,SI20UMC3E28","SI20UMC5E72 FS,SI20UMC5B15# FF,SI20UMC5B15# SS","SI20UMC5E72,SI20UMC5B15#,SI20UMC5B15#",107,,112,,25,,26,,78,360,"HK1003 -Blackpoint D2 - Rev.0E DD30092021"
1-4335,SI20UMC5E74,"(RFE) ANNEX PLATFORM 1 @5.44m IN 20UMC",5121,"HK1003-Rev.0E-3",TT_FinMile,"55902",-,-,-,0,TK_NotStart,02/07/2022,,02/07/2022,,"SI20UMC5E73 FS","SI20UMC5E73","SI20MAJ6-15 FS,SI20UMC5B15# FF,SI20UMC5C15 FS","SI20MAJ6-15,SI20UMC5B15#,SI20UMC5C15",100,,100,,23,,23,,72,1000,"HK1003 -Blackpoint D2 - Rev.0E DD30092021"
1-4336,SI20UMC5E73,"ERECTION ANNEX PLATFORM 1 @5.44m IN 20UMC",5121,"HK1003-Rev.0E-3",TT_Task,"55902",-,-,-,0,TK_NotStart,05/06/2022,,02/07/2022,,"SI20UMC3E25 FS,SI20UMC5B15 FS,SI20UMY6M75 FS,SI20MAJ6-25 FS,SI20UMC3E28 FS","SI20UMC3E25,SI20UMC5B15,SI20UMY6M75,SI20MAJ6-25,SI20UMC3E28","SI20UMC5E74 FS,SI20UMC5B15# FF,SI20UMC5B15# SS","SI20UMC5E74,SI20UMC5B15#,SI20UMC5B15#",96,,100,,22,,23,,68,1000,"HK1003 -Blackpoint D2 - Rev.0E DD30092021"
1-4337,SI20UMC5E76,"(RFE) ANNEX PLATFORM 2 @9.34m IN 20UMC",5121,"HK1003-Rev.0E-3",TT_FinMile,"55902",-,-,-,0,TK_NotStart,12/06/2022,,12/06/2022,,"SI20UMC5E75 FS","SI20UMC5E75","SI20UMC5B15# FF,SI20UMC5C15 FS,SI20UMC5C15 FF","SI20UMC5B15#,SI20UMC5C15,SI20UMC5C15",97,,97,,22,,22,,69,1160,"HK1003 -Blackpoint D2 - Rev.0E DD30092021"
1-4338,SI20UMC5E75,"ERECTION ANNEX PLATFORM 2 @9.34m IN 20UMC",5121,"HK1003-Rev.0E-3",TT_Task,"55902",-,-,-,0,TK_NotStart,16/05/2022,,12/06/2022,,"SI20UMC3E25 FS,SI20UMC5B15 FS,SI20UMY6M75 FS,SI20UMC3E28 FS","SI20UMC3E25,SI20UMC5B15,SI20UMY6M75,SI20UMC3E28","SI20UMC5E76 FS,SI20UMC5B15# FF,SI20UMC5B15# SS,SI20UMC5C15 FS","SI20UMC5E76,SI20UMC5B15#,SI20UMC5B15#,SI20UMC5C15",93,,97,,21,,22,,65,1160,"HK1003 -Blackpoint D2 - Rev.0E DD30092021"
1-4339,SI20UMC5E78,"(RFE) VENTILATION PLATFORM @26.47m IN UMC",5121,"HK1003-Rev.0E-3",TT_FinMile,"55902",-,-,-,0,TK_NotStart,17/04/2022,,17/04/2022,,"SI20UMC5E77 FS","SI20UMC5E77","SI20UMC5B15# FF,SI20SAM6E15 FS,SI20UMC5C15 FS","SI20UMC5B15#,SI20SAM6E15,SI20UMC5C15",89,,89,,20,,20,,58,1608,"HK1003 -Blackpoint D2 - Rev.0E DD30092021"
1-4340,SI20UMC5E77,"ERECTION VENTILATION PLATFORM @26.47m IN 20UMC",5121,"HK1003-Rev.0E-3",TT_Task,"55902",-,-,-,0,TK_NotStart,21/02/2022,,17/04/2022,,"SI20UMC5B15 SS,SI20UMC3E26 FS","SI20UMC5B15,SI20UMC3E26","SI20UMC5E78 FS,SI20UMC5B15# FF,SI20UMC5B15# SS","SI20UMC5E78,SI20UMC5B15#,SI20UMC5B15#",81,,89,,18,,20,,50,1608,"HK1003 -Blackpoint D2 - Rev.0E DD30092021"
1-4341,SI20PAD4-55,"(OTD-OS) ON SITE 20PAD DRY EQUIPMENT & ELECTRICAL BATCH 1",5121,"HK1003-Rev.0E-3",TT_FinMile,"55902",-,-,-,0,TK_NotStart,24/11/2022,,24/11/2022,,"SI20PAD4-57 FS","SI20PAD4-57","SI20PAD6-48 FS","SI20PAD6-48",120,,120,,28,,28,,85,1184,"HK1003 -Blackpoint D2 - Rev.0E DD30092021"
1-4342,SI20PAD3-95,"(RFS) READY FOR SHIPMENT COOLING TOWER EQUIPMENT (EU) 20PAD DRY EQUIPMENT & ELECTRICAL BATCH 1",5121,"HK1003-Rev.0E-3",TT_FinMile,"55902",-,-,-,0,TK_NotStart,23/09/2022,,23/09/2022,,"SI20PAD4B18 FS","SI20PAD4B18","SI20PAD4-57 FS","SI20PAD4-57",111,,111,,26,,26,,81,1184,"HK1003 -Blackpoint D2 - Rev.0E DD30092021"
1-4343,SI20PAD4-57,"TRANSPORT (EU) 20PAD DRY EQUIPMENT & ELECTRICAL BATCH 1",5121,"HK1003-Rev.0E-3",TT_Task,"55902",-,-,-,0,TK_NotStart,24/09/2022,,24/11/2022,,"SI20PAD3-95 FS","SI20PAD3-95","SI20PAD4-55 FS","SI20PAD4-55",112,,120,,26,,28,,81,1184,"HK1003 -Blackpoint D2 - Rev.0E DD30092021"
1-4344,SI20PAD4B18,"LOGISTICS AND CUSTOMS PREPARATION - (EU) 20PAD DRY EQUIPMENT & ELECTRICAL BATCH 1",5121,"HK1003-Rev.0E-3",TT_Task,"55902",-,-,-,0,TK_NotStart,27/08/2022,,23/09/2022,,"SI20PAD3B78 FS","SI20PAD3B78","SI20PAD3-95 FS","SI20PAD3-95",108,,111,,25,,26,,79,1184,"HK1003 -Blackpoint D2 - Rev.0E DD30092021"
1-4345,SI20PAD3B78,"TIMES OF COMPLETION (FINAL DATA IN KANLOG) - (EU) 20PAD DRY EQUIPMENT & ELECTRICAL BATCH 1",5121,"HK1003-Rev.0E-3",TT_FinMile,"55902",-,-,-,0,TK_NotStart,27/08/2022,,27/08/2022,,"SI20PAD3-85 FS","SI20PAD3-85","SI20PAD4B18 FS","SI20PAD4B18",108,,108,,25,,25,,79,1184,"HK1003 -Blackpoint D2 - Rev.0E DD30092021"
1-4346,SI20PAD4-56,"(OTD-OS) ON SITE 20PAD DRY EQUIPMENT & ELECTRICAL BATCH 2",5121,"HK1003-Rev.0E-3",TT_FinMile,"55902",-,-,-,0,TK_NotStart,25/12/2022,,25/12/2022,,"SI20PAD4-58 FS","SI20PAD4-58","SI20PAD6-66 FS","SI20PAD6-66",125,,125,,29,,29,,87,936,"HK1003 -Blackpoint D2 - Rev.0E DD30092021"
1-4347,SI20PAD3-96,"(RFS) READY FOR SHIPMENT COOLING TOWER EQUIPMENT (EU) 20PAD DRY EQUIPMENT & ELECTRICAL BATCH 2",5121,"HK1003-Rev.0E-3",TT_FinMile,"55902",-,-,-,0,TK_NotStart,24/10/2022,,24/10/2022,,"SI20PAD4B19 FS","SI20PAD4B19","SI20PAD4-58 FS","SI20PAD4-58",116,,116,,27,,27,,84,936,"HK1003 -Blackpoint D2 - Rev.0E DD30092021"
1-4348,SI20PAD4-58,"TRANSPORT (EU) 20PAD DRY EQUIPMENT & ELECTRICAL BATCH 2",5121,"HK1003-Rev.0E-3",TT_Task,"55902",-,-,-,0,TK_NotStart,25/10/2022,,25/12/2022,,"SI20PAD3-96 FS","SI20PAD3-96","SI20PAD4-56 FS","SI20PAD4-56",116,,125,,27,,29,,84,936,"HK1003 -Blackpoint D2 - Rev.0E DD30092021"
1-4349,SI20PAD4B19,"LOGISTICS AND CUSTOMS PREPARATION - (EU) 20PAD DRY EQUIPMENT & ELECTRICAL BATCH 2",5121,"HK1003-Rev.0E-3",TT_Task,"55902",-,-,-,0,TK_NotStart,27/09/2022,,24/10/2022,,"SI20PAD3B79 FS","SI20PAD3B79","SI20PAD3-96 FS","SI20PAD3-96",112,,116,,26,,27,,82,936,"HK1003 -Blackpoint D2 - Rev.0E DD30092021"
1-4350,SI20PAD3B79,"TIMES OF COMPLETION (FINAL DATA IN KANLOG) - (EU) 20PAD DRY EQUIPMENT & ELECTRICAL BATCH 2",5121,"HK1003-Rev.0E-3",TT_FinMile,"55902",-,-,-,0,TK_NotStart,26/09/2022,,26/09/2022,,"SI20PAD3-85 FS","SI20PAD3-85","SI20PAD4B19 FS","SI20PAD4B19",112,,112,,26,,26,,82,936,"HK1003 -Blackpoint D2 - Rev.0E DD30092021"
1-4351,SI20PAD4-61,"(OTD-OS) ON SITE 20PAD MECH. EQUIPMENT & FANSTACK BATCH 1",5121,"HK1003-Rev.0E-3",TT_FinMile,"55902",-,-,-,0,TK_NotStart,24/01/2023,,24/01/2023,,"SI20PAD4-59 FS","SI20PAD4-59","SI20PAD6-43 FS,SI20PAD6-42 FS","SI20PAD6-43,SI20PAD6-42",129,,129,,30,,30,,89,80,"HK1003 -Blackpoint D2 - Rev.0E DD30092021"
1-4352,SI20PAD3-97,"(RFS) READY FOR SHIPMENT COOLING TOWER EQUIPMENT (EU) 20PAD MECH. EQUIPMENT & FANSTACK BATCH 1",5121,"HK1003-Rev.0E-3",TT_FinMile,"55902",-,-,-,0,TK_NotStart,23/11/2022,,23/11/2022,,"SI20PAD4B20 FS","SI20PAD4B20","SI20PAD4-59 FS","SI20PAD4-59",120,,120,,28,,28,,85,80,"HK1003 -Blackpoint D2 - Rev.0E DD30092021"
1-4353,SI20PAD4-59,"TRANSPORT (EU) 20PAD MECH. EQUIPMENT & FANSTACK BATCH 1",5121,"HK1003-Rev.0E-3",TT_Task,"55902",-,-,-,0,TK_NotStart,24/11/2022,,24/01/2023,,"SI20PAD3-97 FS","SI20PAD3-97","SI20PAD4-61 FS","SI20PAD4-61",120,,129,,28,,30,,85,80,"HK1003 -Blackpoint D2 - Rev.0E DD30092021"
1-4354,SI20PAD4B20,"LOGISTICS AND CUSTOMS PREPARATION - (EU) 20PAD MECH. EQUIPMENT & FANSTACK BATCH 1",5121,"HK1003-Rev.0E-3",TT_Task,"55902",-,-,-,0,TK_NotStart,27/10/2022,,23/11/2022,,"SI20PAD3B80 FS","SI20PAD3B80","SI20PAD3-97 FS","SI20PAD3-97",116,,120,,27,,28,,84,80,"HK1003 -Blackpoint D2 - Rev.0E DD30092021"
1-4355,SI20PAD3B80,"TIMES OF COMPLETION (FINAL DATA IN KANLOG) - (EU) 20PAD MECH. EQUIPMENT & FANSTACK BATCH 1",5121,"HK1003-Rev.0E-3",TT_FinMile,"55902",-,-,-,0,TK_NotStart,27/10/2022,,27/10/2022,,"SI20PAD3-86 FS","SI20PAD3-86","SI20PAD4B20 FS","SI20PAD4B20",116,,116,,27,,27,,84,80,"HK1003 -Blackpoint D2 - Rev.0E DD30092021"
1-4356,SI20PAD4-62,"(OTD-OS) ON SITE 20PAD MECH. EQUIPMENT & FANSTACK BATCH 2",5121,"HK1003-Rev.0E-3",TT_FinMile,"55902",-,-,-,0,TK_NotStart,25/02/2023,,25/02/2023,,"SI20PAD4-60 FS","SI20PAD4-60","SI20PAD6-68 FS,SI20PAD6-69 FS","SI20PAD6-68,SI20PAD6-69",134,,134,,31,,31,,91,72,"HK1003 -Blackpoint D2 - Rev.0E DD30092021"
1-4357,SI20PAD3-98,"(RFS) READY FOR SHIPMENT COOLING TOWER EQUIPMENT (EU) 20PAD MECH. EQUIPMENT & FANSTACK BATCH 2",5121,"HK1003-Rev.0E-3",TT_FinMile,"55902",-,-,-,0,TK_NotStart,25/12/2022,,25/12/2022,,"SI20PAD4B21 FS","SI20PAD4B21","SI20PAD4-60 FS","SI20PAD4-60",125,,125,,29,,29,,87,72,"HK1003 -Blackpoint D2 - Rev.0E DD30092021"
1-4358,SI20PAD4-60,"TRANSPORT (EU) 20PAD MECH. EQUIPMENT & FANSTACK BATCH 2",5121,"HK1003-Rev.0E-3",TT_Task,"55902",-,-,-,0,TK_NotStart,26/12/2022,,25/02/2023,,"SI20PAD3-98 FS","SI20PAD3-98","SI20PAD4-62 FS","SI20PAD4-62",125,,134,,29,,31,,87,72,"HK1003 -Blackpoint D2 - Rev.0E DD30092021"
1-4359,SI20PAD4B21,"LOGISTICS AND CUSTOMS PREPARATION - (EU) 20PAD MECH. EQUIPMENT & FANSTACK BATCH 2",5121,"HK1003-Rev.0E-3",TT_Task,"55902",-,-,-,0,TK_NotStart,28/11/2022,,25/12/2022,,"SI20PAD3B81 FS","SI20PAD3B81","SI20PAD3-98 FS","SI20PAD3-98",121,,125,,28,,29,,86,72,"HK1003 -Blackpoint D2 - Rev.0E DD30092021"
1-4360,SI20PAD3B81,"TIMES OF COMPLETION (FINAL DATA IN KANLOG) - (EU) 20PAD MECH. EQUIPMENT & FANSTACK BATCH 2",5121,"HK1003-Rev.0E-3",TT_FinMile,"55902",-,-,-,0,TK_NotStart,27/11/2022,,27/11/2022,,"SI20PAD3-86 FS","SI20PAD3-86","SI20PAD4B21 FS","SI20PAD4B21",121,,121,,28,,28,,86,72,"HK1003 -Blackpoint D2 - Rev.0E DD30092021"
1-4361,SI20PAD4-63,"(OTD-OS) ON SITE 20PAD VACUUM SKID & PIPING",5121,"HK1003-Rev.0E-3",TT_FinMile,"55902",-,-,-,0,TK_NotStart,25/12/2022,,25/12/2022,,"SI20PAD4-64 FS","SI20PAD4-64","SI20PAD6-46 FS,SI20PAD6-45 FS,SI20PAD6-64 FS","SI20PAD6-46,SI20PAD6-45,SI20PAD6-64",125,,125,,29,,29,,87,560,"HK1003 -Blackpoint D2 - Rev.0E DD30092021"
1-4362,SI20PAD3-99,"(RFS) READY FOR SHIPMENT COOLING TOWER EQUIPMENT (EU) 20PAD VACUUM SKID & PIPING",5121,"HK1003-Rev.0E-3",TT_FinMile,"55902",-,-,-,0,TK_NotStart,24/10/2022,,24/10/2022,,"SI20PAD4B22 FS","SI20PAD4B22","SI20PAD4-64 FS","SI20PAD4-64",116,,116,,27,,27,,84,560,"HK1003 -Blackpoint D2 - Rev.0E DD30092021"
1-4363,SI20PAD4-64,"TRANSPORT (EU) 20PAD VACUUM SKID & PIPING",5121,"HK1003-Rev.0E-3",TT_Task,"55902",-,-,-,0,TK_NotStart,25/10/2022,,25/12/2022,,"SI20PAD3-99 FS","SI20PAD3-99","SI20PAD4-63 FS","SI20PAD4-63",116,,125,,27,,29,,84,560,"HK1003 -Blackpoint D2 - Rev.0E DD30092021"
1-4364,SI20PAD4B22,"LOGISTICS AND CUSTOMS PREPARATION - (EU) 20PAD VACUUM SKID & PIPING",5121,"HK1003-Rev.0E-3",TT_Task,"55902",-,-,-,0,TK_NotStart,27/09/2022,,24/10/2022,,"SI20PAD3B82 FS","SI20PAD3B82","SI20PAD3-99 FS","SI20PAD3-99",112,,116,,26,,27,,82,560,"HK1003 -Blackpoint D2 - Rev.0E DD30092021"
1-4365,SI20PAD3B82,"TIMES OF COMPLETION (FINAL DATA IN KANLOG) - (EU) 20PAD VACUUM SKID & PIPING",5121,"HK1003-Rev.0E-3",TT_FinMile,"55902",-,-,-,0,TK_NotStart,26/09/2022,,26/09/2022,,"SI20PAD3-87 FS","SI20PAD3-87","SI20PAD4B22 FS","SI20PAD4B22",112,,112,,26,,26,,82,560,"HK1003 -Blackpoint D2 - Rev.0E DD30092021"
1-4366,SI--UB-2-36,"(C) BASIC DESIGN PLANT LAYOUT DWGS (UF)  TRANSFORMER AREA AVAILABLE",5121,"HK1003-Rev.0E-3",TT_FinMile,"55902",-,-,-,100,TK_Complete,15/05/2021,15/05/2021,15/05/2021,15/05/2021,"SI--UB-2-35 FS","SI--UB-2-35","SI20UBN2-106 FS,SI--PM-2-60 FS,SI--UBF2-70 FS,SI20UBZ2-65 FS","SI20UBN2-106,SI--PM-2-60,SI--UBF2-70,SI20UBZ2-65",41,41,41,41,9,9,9,9,12,,"HK1003 -Blackpoint D2 - Rev.0E DD30092021"
1-4367,SI--UR-2-45,"(C) BASIC DESIGN PLANT LAYOUT DWGS (UF) COOLING TOWER AVAILABLE",5121,"HK1003-Rev.0E-3",TT_FinMile,"55902",-,-,-,100,TK_Complete,15/05/2021,15/05/2021,15/05/2021,15/05/2021,"SI--UR-2-35 FS","SI--UR-2-35","SI--PM-2-60 FS,SI--URA2-70 FS,SI--URA2-70 FF,SI--URD2-70 FS,SI20UBZ2-73 FS","SI--PM-2-60,SI--URA2-70,SI--URA2-70,SI--URD2-70,SI20UBZ2-73",41,41,41,41,9,9,9,9,12,,"HK1003 -Blackpoint D2 - Rev.0E DD30092021"
1-4368,SI--UE-2E37,"(C) BASIC DESIGN PLANT LAYOUT DWGS (UF) FUEL GAS AREA  AVAILABLE",5121,"HK1003-Rev.0E-3",TT_FinMile,"55902",-,-,-,100,TK_Complete,15/05/2021,15/05/2021,15/05/2021,15/05/2021,"SI--UE-2E36 FS","SI--UE-2E36","SI--PM-2-60 FS,SI20UEN2-90 FS,SI20UEY2-82 FS","SI--PM-2-60,SI20UEN2-90,SI20UEY2-82",41,41,41,41,9,9,9,9,13,,"HK1003 -Blackpoint D2 - Rev.0E DD30092021"
1-4369,SI--UE2-E38,"(C) BASIC DESIGN PLANT LAYOUT DWGS (UF) CLEAN & DIRTY OIL TANK AREA  AVAILABLE",5121,"HK1003-Rev.0E-3",TT_FinMile,"55902",-,-,-,100,TK_Complete,15/05/2021,15/05/2021,15/05/2021,15/05/2021,"SI--UE2-E37 FS","SI--UE2-E37","SI--PM-2-60 FS,SI20UMX2-70 FS,SI20UBY2-59 FS,SI20UBA2C-25 FS,SI20UBY2-57 FS,SI20UBY2-65 FS","SI--PM-2-60,SI20UMX2-70,SI20UBY2-59,SI20UBA2C-25,SI20UBY2-57,SI20UBY2-65",41,41,41,41,9,9,9,9,13,,"HK1003 -Blackpoint D2 - Rev.0E DD30092021"
1-4370,CLP20UEZ5-84,"(RFE) FOUNDATION 20UEZ02  (CLP Scope)",5121,"HK1003-Rev.0E-3",TT_FinMile,"55902",-,-,-,100,TK_Complete,30/06/2021,30/06/2021,30/06/2021,30/06/2021,"CLP20UEZ5-82 FS","CLP20UEZ5-82","SI20BZP7-192 FS,SI-----5-20 FS,CL20UBZ-10 FS,CL20UBZ-15 FS","SI20BZP7-192,SI-----5-20,CL20UBZ-10,CL20UBZ-15",47,47,47,47,11,11,11,11,19,,"HK1003 -Blackpoint D2 - Rev.0E DD30092021"
1-4371,CLP20UEZ5-82,"CONSTRUCTION FOUNDATION 20UEZ02  (CLP Scope)",5121,"HK1003-Rev.0E-3",TT_Task,"55902",-,-,-,100,TK_Complete,03/06/2021,03/06/2021,30/06/2021,30/06/2021,"CLP20UEZ5-83 SS","CLP20UEZ5-83","CLP20UEZ5-84 FS,CLP20UEZ5-80 FS","CLP20UEZ5-84,CLP20UEZ5-80",43,43,47,47,10,10,11,11,15,,"HK1003 -Blackpoint D2 - Rev.0E DD30092021"
1-4372,CLP20UEZ5-81,"WORK PREPARATION, EXCAVATION 20UEZ02  (CLP Scope)",5121,"HK1003-Rev.0E-3",TT_Task,"55902",-,-,-,100,TK_Complete,20/05/2021,20/05/2021,02/06/2021,02/06/2021,"CLP20UEZ2-111 FS,CLP20UEZ2-112 FS,CL-3335-80 FS","CLP20UEZ2-111,CLP20UEZ2-112,CL-3335-80","CLP20UEZ5-83 FS","CLP20UEZ5-83",41,41,43,43,9,9,10,10,13,,"HK1003 -Blackpoint D2 - Rev.0E DD30092021"
1-4373,CLP20UEZ5-83,"(H) START PLACING FORMWORK 20UEZ02  (CLP Scope)",5121,"HK1003-Rev.0E-3",TT_Mile,"55902",-,-,-,100,TK_Complete,03/06/2021,03/06/2021,03/06/2021,03/06/2021,"CLP20UEZ5-81 FS,CLP20UEZ2-113 FS","CLP20UEZ5-81,CLP20UEZ2-113","CLP20UEZ5-82 SS","CLP20UEZ5-82",43,43,43,43,10,10,10,10,15,,"HK1003 -Blackpoint D2 - Rev.0E DD30092021"
1-4374,CLP20UEZ2-108,"PREPARATION FOUNDATION GROUNDING DWGS 20UEZ02  (CLP Scope)",5121,"HK1003-Rev.0E-3",TT_Task,"55902",-,-,-,100,TK_Complete,07/02/2021,07/02/2021,20/02/2021,20/02/2021,"CLP20UEZ2-107 FF","CLP20UEZ2-107","CLP20UEZ2-109 FS,CLP20UEZ2-109 FF","CLP20UEZ2-109,CLP20UEZ2-109",27,27,29,29,6,6,6,6,4,,"HK1003 -Blackpoint D2 - Rev.0E DD30092021"
1-4375,CLP20UEZ2-106,"BASIC BUILDING DESIGN INCL. 3D MODEL 20UEZ02  (CLP Scope)",5121,"HK1003-Rev.0E-3",TT_Task,"55902",-,-,-,100,TK_Complete,21/12/2020,21/12/2020,16/01/2021,16/01/2021,"CLP20UEZ2-105 FS","CLP20UEZ2-105","CLP20UEZ2-107 FS","CLP20UEZ2-107",20,20,24,24,4,4,5,5,1,,"HK1003 -Blackpoint D2 - Rev.0E DD30092021"
1-4376,CLP20UEZ2-105,"(MS3) CONCRETE STRUCTURE FINAL DIMENSIONS, LOADS AVAILABLE 20UEZ02  (CLP Scope)",5121,"HK1003-Rev.0E-3",TT_FinMile,"55902",-,-,-,100,TK_Complete,20/12/2020,20/12/2020,20/12/2020,20/12/2020,"SI-----1-01 FS","SI-----1-01","CLP20UEZ2-107 FS,CLP20UEZ2-106 FS","CLP20UEZ2-107,CLP20UEZ2-106",20,20,20,20,4,4,4,4,1,,"HK1003 -Blackpoint D2 - Rev.0E DD30092021"
1-4377,CLP20UEZ2-111,"(F) CONCRETE STRUCTURE DWGS ON SITE RELEASED FOR EXECUTION 20UEZ02  (CLP Scope)",5121,"HK1003-Rev.0E-3",TT_FinMile,"55902",-,-,-,100,TK_Complete,19/05/2021,19/05/2021,19/05/2021,19/05/2021,"CLP20UEZ2-107 FS,CLP20UEZ2-110 FS","CLP20UEZ2-107,CLP20UEZ2-110","CLP20UEZ5-81 FS","CLP20UEZ5-81",41,41,41,41,9,9,9,9,13,,"HK1003 -Blackpoint D2 - Rev.0E DD30092021"
1-4378,CLP20UEZ2-107,"DETAIL DESIGN CONCRETE STRUCTURE 20UEZ02  (CLP Scope)",5121,"HK1003-Rev.0E-3",TT_Task,"55902",-,-,-,100,TK_Complete,17/01/2021,17/01/2021,20/02/2021,20/02/2021,"CLP20UEZ2-106 FS,CLP20UEZ2-105 FS","CLP20UEZ2-106,CLP20UEZ2-105","CLP20UEZ2-108 FF,CLP20UEZ2-111 FS,CLP20UEZ2-109 FS,CLP20UEZ2-109 FF","CLP20UEZ2-108,CLP20UEZ2-111,CLP20UEZ2-109,CLP20UEZ2-109",24,24,29,29,5,5,6,6,2,,"HK1003 -Blackpoint D2 - Rev.0E DD30092021"
1-4379,CLP20UEZ2-109,"BD - SUBMISSION & APPROVAL - DETAIL DESIGN CONCRETE - 20UEZ02  (CLP Scope)",5121,"HK1003-Rev.0E-3",TT_Task,"55902",-,-,-,100,TK_Complete,21/02/2021,21/02/2021,21/04/2021,21/04/2021,"CLP20UEZ2-107 FS,CLP20UEZ2-107 FF,CLP20UEZ2-108 FS,CLP20UEZ2-108 FF","CLP20UEZ2-107,CLP20UEZ2-107,CLP20UEZ2-108,CLP20UEZ2-108","CLP20UEZ2-110 FS,CLP20UEZ2-110 FF,CLP20UEZ2-112 FS","CLP20UEZ2-110,CLP20UEZ2-110,CLP20UEZ2-112",29,29,37,37,6,6,8,8,5,,"HK1003 -Blackpoint D2 - Rev.0E DD30092021"
1-4380,CLP20UEZ2-110,"BD - CONSENT LETTER - DESIGN  20UEZ02  (CLP Scope)",5121,"HK1003-Rev.0E-3",TT_Task,"55902",-,-,-,100,TK_Complete,22/04/2021,22/04/2021,19/05/2021,19/05/2021,"CLP20UEZ2-109 FS,CLP20UEZ2-109 FF","CLP20UEZ2-109,CLP20UEZ2-109","CLP20UEZ2-111 FS,CLP20UEZ2-113 FS","CLP20UEZ2-111,CLP20UEZ2-113",37,37,41,41,8,8,9,9,9,,"HK1003 -Blackpoint D2 - Rev.0E DD30092021"
1-4381,SI20BZP7-192,"ERECTION CABLE TRAYS ON 20UEZ02",5121,"HK1003-Rev.0E-3",TT_Task,"55902",-,-,-,0,TK_NotStart,21/10/2022,,30/10/2022,,"CLP20UEZ5-84 FS,SI20BZP7-70 FS,SI20BZP7-5 FS","CLP20UEZ5-84,SI20BZP7-70,SI20BZP7-5","SI20PAR7A16 FS,SI20PA6-1# SS,SI20BZP7B10# SS,SI20BZP7B10# FF,SI20PA6-1# FF,SI20BZK7B47 FS","SI20PAR7A16,SI20PA6-1#,SI20BZP7B10#,SI20BZP7B10#,SI20PA6-1#,SI20BZK7B47",115,,117,,27,,27,,83,1320,"HK1003 -Blackpoint D2 - Rev.0E DD30092021"
1-4382,SI20BZP7-193,"ERECTION CABLE TRAYS ON 20UEY03",5121,"HK1003-Rev.0E-3",TT_Task,"55902",-,-,-,0,TK_NotStart,08/04/2022,,17/04/2022,,"SI20UEY5-45 FS","SI20UEY5-45","SI20BZP7-174 FS,SI20UEN615 FS","SI20BZP7-174,SI20UEN615",87,,89,,20,,20,,57,1136,"HK1003 -Blackpoint D2 - Rev.0E DD30092021"
1-4383,SI20BZP7-194,"ERECTION STACK CABLE TRAYS FOR EMISSION MONITORING PART 1 (parallel to Pre-assembly stack part 1)",5121,"HK1003-Rev.0E-3",TT_Task,"55902",-,-,-,0,TK_NotStart,19/05/2022,,22/06/2022,,"SI20HB-6-41 SS,SI20CJF4-40 FS","SI20HB-6-41,SI20CJF4-40","SI20HB-6-51 FS","SI20HB-6-51",93,,98,,21,,23,,65,1696,"HK1003 -Blackpoint D2 - Rev.0E DD30092021"
1-4384,SI20BZP7-195,"ERECTION STACK CABLE TRAYS FOR EMISSION MONITORING PART 2 (parallel to Pre-assembly stack part 2)",5121,"HK1003-Rev.0E-3",TT_Task,"55902",-,-,-,0,TK_NotStart,19/05/2022,,22/06/2022,,"SI20HB-6-44 SS,SI20CJF4-40 FS","SI20HB-6-44,SI20CJF4-40","SI20HB-6-45 FS","SI20HB-6-45",93,,98,,21,,23,,65,2720,"HK1003 -Blackpoint D2 - Rev.0E DD30092021"
1-4385,SI20BZP7-196,"ERECTION CABLE TRAYS ON 20UBY05",5121,"HK1003-Rev.0E-3",TT_Task,"55902",-,-,-,0,TK_NotStart,12/11/2022,,16/11/2022,,"SI20BZP7-45 FS,SI20BZP7-55 FS,SI20UBY5-56 FS","SI20BZP7-45,SI20BZP7-55,SI20UBY5-56","SI20BZK7B27 FS,SI20MAA7A15 FS,SI20MAG7A15 FS,SI20MAJ7A15 FS,SI20MAL7A15 FS,SI20MAN7H15 FS,SI20MAV7H15 FS,SI20MAW7H15 FS,SI20MAX7H15 FS,SI20MB-7H15 FS,SI20MB-7J15 FS,SI20MBQ7H15 FS,SI20LBA7H15 FS,SI20LBA7H16 FS,SI20LBA7J15 FS,SI20LBA7J16 FS,SI20LBB7J15 FS,SI20LBB7J17 FS,SI20LBG7A17 FS,SI20LBG7A15 FS,SI20LAB7H15 FS,SI20LCA7A15 FS,SI20LCL7A15 FS,SI20LCW7H15 FS,SI20LDK7H16 FS,SI20EK-7H15 FS,SI20EK-7I15 FS,SI20PAB7A15 FS,SI20PAH7H15 FS,SI20PAR7A16 FS,SI20PCB7H15 FS,SI20PGB7H15 FS,SI20GHC7H15 FS,SI20GHC7H17 FS,SI20GHD7H15 FS,SI20QFB7H15 FS,SI20QU-7H15 FS,SI20BZK7B01 FS,SI20BZK7B33 FS","SI20BZK7B27,SI20MAA7A15,SI20MAG7A15,SI20MAJ7A15,SI20MAL7A15,SI20MAN7H15,SI20MAV7H15,SI20MAW7H15,SI20MAX7H15,SI20MB-7H15,SI20MB-7J15,SI20MBQ7H15,SI20LBA7H15,SI20LBA7H16,SI20LBA7J15,SI20LBA7J16,SI20LBB7J15,SI20LBB7J17,SI20LBG7A17,SI20LBG7A15,SI20LAB7H15,SI20LCA7A15,SI20LCL7A15,SI20LCW7H15,SI20LDK7H16,SI20EK-7H15,SI20EK-7I15,SI20PAB7A15,SI20PAH7H15,SI20PAR7A16,SI20PCB7H15,SI20PGB7H15,SI20GHC7H15,SI20GHC7H17,SI20GHD7H15,SI20QFB7H15,SI20QU-7H15,SI20BZK7B01,SI20BZK7B33",119,,119,,27,,27,,85,168,"HK1003 -Blackpoint D2 - Rev.0E DD30092021"
1-4386,SI20BZP7-197,"ERECTION CABLE TRAYS ON 10UEY01",5121,"HK1003-Rev.0E-3",TT_Task,"55902",-,-,-,0,TK_NotStart,18/05/2022,,14/06/2022,,"SI--BZP4B40 FS,SI20UEY5-108 FS,SI20UEY5-100 FS,SI20BZP7-199 FS","SI--BZP4B40,SI20UEY5-108,SI20UEY5-100,SI20BZP7-199","SI20BZP7-191 FS","SI20BZP7-191",93,,97,,21,,22,,65,624,"HK1003 -Blackpoint D2 - Rev.0E DD30092021"
1-4387,SI20BZP7-198,"ERECTION CABLE TRAYS 20UMC SOUTH / WEST CORNER",5121,"HK1003-Rev.0E-3",TT_Task,"55902",-,-,-,0,TK_NotStart,11/06/2022,,08/07/2022,,"SI--BZP4B40 FS,SI20BZP7-160 FS,SI20BZP7-20 FS","SI--BZP4B40,SI20BZP7-160,SI20BZP7-20","SI20BZK7A36 FS,SI20BZK7-190 FS","SI20BZK7A36,SI20BZK7-190",97,,100,,22,,23,,69,1440,"HK1003 -Blackpoint D2 - Rev.0E DD30092021"
1-4388,SI20BZP7-199,"ADAPTION CABLE TRAYS ON 10UBS04/05 /10UBA",5121,"HK1003-Rev.0E-3",TT_Task,"55902",-,-,-,0,TK_NotStart,20/04/2022,,17/05/2022,,"SI--BZP4B40 FS","SI--BZP4B40","SI20BZP7-197 FS","SI20BZP7-197",89,,93,,20,,21,,58,624,"HK1003 -Blackpoint D2 - Rev.0E DD30092021"
1-4389,SI20BZP7B41,"INSTALLATION OF CABLE TRAYS FOR D2 PLANT TO SUBSTATION BRANCH",5121,"HK1003-Rev.0E-3",TT_Task,"55902",-,-,-,0,TK_NotStart,09/07/2022,,05/08/2022,,"CL20-TPE-10 FS,SI20BZP7B44 SS","CL20-TPE-10,SI20BZP7B44","SI20BZP7B42 SS","SI20BZP7B42",101,,104,,23,,24,,73,824,"HK1003 -Blackpoint D2 - Rev.0E DD30092021"
1-4390,SI20BZP7B42,"INSTALLATION OF CABLE TRAYS C-STATION TO SUBSTATION BRANCH",5121,"HK1003-Rev.0E-3",TT_Task,"55902",-,-,-,0,TK_NotStart,30/07/2022,,26/08/2022,,"CL20-TPE-15 FS,SI20BZP7B41 SS","CL20-TPE-15,SI20BZP7B41","SI20BZK7-187 FS","SI20BZK7-187",104,,107,,24,,25,,76,824,"HK1003 -Blackpoint D2 - Rev.0E DD30092021"
1-4391,SI20BZP7B43,"INSTALLATION OF CABLE TRAY BRANCH TO SUBSTATION",5121,"HK1003-Rev.0E-3",TT_Task,"55902",-,-,-,0,TK_NotStart,28/05/2022,,17/06/2022,,"CL20-TPE-16 FS,SI20BZP7-160 SS","CL20-TPE-16,SI20BZP7-160","SI20BZP7B44 SS","SI20BZP7B44",95,,97,,22,,22,,66,824,"HK1003 -Blackpoint D2 - Rev.0E DD30092021"
1-4392,SI20BZP7B44,"INSTALLATION OF CABLE TRAYS INSIDE SUBSTATION",5121,"HK1003-Rev.0E-3",TT_Task,"55902",-,-,-,0,TK_NotStart,18/06/2022,,22/07/2022,,"CL20-TPE-17 FS,SI20BZP7B43 SS","CL20-TPE-17,SI20BZP7B43","SI20BZP7B41 SS","SI20BZP7B41",98,,102,,22,,24,,70,824,"HK1003 -Blackpoint D2 - Rev.0E DD30092021"
1-4393,CL20-TPE-10,"RELEASE FOR INSTALLATION CABLE TRAYS FROM D2 PLANT TO SUBSTATION",5121,"HK1003-Rev.0E-3",TT_Mile,"55902",-,-,-,0,TK_NotStart,09/05/2022,,09/05/2022,,"SI-----1-05 FS","SI-----1-05","SI20BZP7B41 FS,CL20-TPE-15 FS","SI20BZP7B41,CL20-TPE-15",92,,92,,21,,21,,64,976,"HK1003 -Blackpoint D2 - Rev.0E DD30092021"
1-4394,CL20-TPE-15,"RELEASE FOR INSTALLATION CABLE TRAYS FROM C-STATION TO SUBSTATION BRANCH",5121,"HK1003-Rev.0E-3",TT_Mile,"55902",-,-,-,0,TK_NotStart,09/05/2022,,09/05/2022,,"CL20-TPE-10 FS","CL20-TPE-10","SI20BZP7B42 FS,CL20-TPE-16 FS","SI20BZP7B42,CL20-TPE-16",92,,92,,21,,21,,64,976,"HK1003 -Blackpoint D2 - Rev.0E DD30092021"
1-4395,CL20-TPE-16,"RELEASE FOR INSTALLATION CABLE TRAY BRANCH TO SUBSTATION",5121,"HK1003-Rev.0E-3",TT_Mile,"55902",-,-,-,0,TK_NotStart,09/05/2022,,09/05/2022,,"CL20-TPE-15 FS","CL20-TPE-15","SI20BZP7B43 FS,CL20-TPE-17 FS","SI20BZP7B43,CL20-TPE-17",92,,92,,21,,21,,64,976,"HK1003 -Blackpoint D2 - Rev.0E DD30092021"
1-4396,CL20-TPE-17,"RELEASE FOR INSTALLATION CABLE TRAYS INSIDE SUBSTATION",5121,"HK1003-Rev.0E-3",TT_Mile,"55902",-,-,-,0,TK_NotStart,30/05/2022,,30/05/2022,,"CL20-TPE-16 FS","CL20-TPE-16","SI20BZP7B44 FS","SI20BZP7B44",95,,95,,22,,22,,67,976,"HK1003 -Blackpoint D2 - Rev.0E DD30092021"
1-4397,SI20BZK7B01,"INTERCONNECTING I&C CABLING TO EXISTING DCS IN 00UCA (D1) -D2 TO D1 CONTROL ROOM",5121,"HK1003-Rev.0E-3",TT_Task,"55902",-,-,-,0,TK_NotStart,17/11/2022,,21/12/2022,,"SI20UCA7-15 SS,SI20UCA7-16 FS,SI20BZK4-41 FS,SI20UBA7C-15 FS,CLP20UBZ5-76 FS,SI20BZP7-105 FS,SI20UBY5-56 FS,SI20BZP7-182 FS,SI20BZP7-5 FS,SI20BZP7-196 FS","SI20UCA7-15,SI20UCA7-16,SI20BZK4-41,SI20UBA7C-15,CLP20UBZ5-76,SI20BZP7-105,SI20UBY5-56,SI20BZP7-182,SI20BZP7-5,SI20BZP7-196","SI20BZK7B28 SS","SI20BZK7B28",119,,124,,27,,29,,85,368,"HK1003 -Blackpoint D2 - Rev.0E DD30092021"
1-4398,SI20BZK7A35,"CABLING GIS TO D2",5121,"HK1003-Rev.0E-3",TT_Task,"55902",-,-,-,0,TK_NotStart,14/12/2022,,10/01/2023,,"SI20BZK7A28 FS,SI--BZK4-40 FS","SI20BZK7A28,SI--BZK4-40","SI20B--8-50 FS","SI20B--8-50",123,,127,,28,,29,,87,736,"HK1003 -Blackpoint D2 - Rev.0E DD30092021"
1-4399,SI20BZK7B46,"CABLING DEMIN. WATER AREA",5121,"HK1003-Rev.0E-3",TT_Task,"55902",-,-,-,0,TK_NotStart,26/12/2022,,08/01/2023,,"SI20UBA7-105 FS,SI--BZK4-40 FS","SI20UBA7-105,SI--BZK4-40","SI20PAD8-10 FS,SI--BFT8-10 FS,SI--BFT8-26 FS","SI20PAD8-10,SI--BFT8-10,SI--BFT8-26",125,,127,,29,,29,,87,1104,"HK1003 -Blackpoint D2 - Rev.0E DD30092021"
1-4400,SI20BZK7A36,"CABLING 20UMC TO UBA7x",5121,"HK1003-Rev.0E-3",TT_Task,"55902",-,-,-,0,TK_NotStart,11/12/2022,,14/01/2023,,"SI20BZP7-100 FS,SI20BZP7-198 FS,SI20BZP7-150 FS,SI--BZK4-40 FS","SI20BZP7-100,SI20BZP7-198,SI20BZP7-150,SI--BZK4-40","SI20UBA8-12 FS,SI20CPA8-10 FS","SI20UBA8-12,SI20CPA8-10",123,,128,,28,,29,,87,200,"HK1003 -Blackpoint D2 - Rev.0E DD30092021"
1-4401,SI20BZK7E27,"CABLING TO OIL MODULE",5121,"HK1003-Rev.0E-3",TT_Task,"55902",-,-,-,0,TK_NotStart,11/12/2022,,31/12/2022,,"SI20MAV7-15 SS,SI20BZP7-100 FS,SI20BZP7-110 FS,SI20BZP7-150 FS,SI--BZK4-40 FS","SI20MAV7-15,SI20BZP7-100,SI20BZP7-110,SI20BZP7-150,SI--BZK4-40","SI20MBV6-55 FS","SI20MBV6-55",123,,126,,28,,29,,87,440,"HK1003 -Blackpoint D2 - Rev.0E DD30092021"
1-4402,SI20BZK7A37,"CABLING TO GT FROM 20UBA7x",5121,"HK1003-Rev.0E-3",TT_Task,"55902",-,-,-,0,TK_NotStart,11/12/2022,,17/12/2022,,"SI20BZP7-100 FS,SI20BZP7-150 FS,SI--BZK4-40 FS","SI20BZP7-100,SI20BZP7-150,SI--BZK4-40","SI20BZK7L25 FS","SI20BZK7L25",123,,124,,28,,28,,87,272,"HK1003 -Blackpoint D2 - Rev.0E DD30092021"
1-4403,SI20BZK7-200,"CABLING ULA INTERNAL TO 20UBA1110/20",5121,"HK1003-Rev.0E-3",TT_Task,"55902",-,-,-,0,TK_NotStart,26/12/2022,,08/01/2023,,"SI20BZP7-135 FS,SI20UBA7L16 FS,SI--BZK4-40 FS","SI20BZP7-135,SI20UBA7L16,SI--BZK4-40","SI20UBA8-60 FS,SI20BF-8-19 FS,SI20HSJ8-11 FS","SI20UBA8-60,SI20BF-8-19,SI20HSJ8-11",125,,127,,29,,29,,87,792,"HK1003 -Blackpoint D2 - Rev.0E DD30092021"
1-4404,SI20BZK7B47,"CABLING TO / INSIDE WATER INTAKE",5121,"HK1003-Rev.0E-3",TT_Task,"55902",-,-,-,0,TK_NotStart,24/03/2023,,06/04/2023,,"SI20BZP7-170 FS,SI20BZP7-70 FS,SI20BZP7-65 FS,SI20BZP7-55 FS,SI20BZP7-192 FS,SI20UBA7-105 FS,SI20BZP7-145 FS,SI--BZK4-40 FS","SI20BZP7-170,SI20BZP7-70,SI20BZP7-65,SI20BZP7-55,SI20BZP7-192,SI20UBA7-105,SI20BZP7-145,SI--BZK4-40","SI20PAD8-10 FS","SI20PAD8-10",137,,139,,32,,32,,93,400,"HK1003 -Blackpoint D2 - Rev.0E DD30092021"
1-4405,SI20BZK7C34,"CABLING TO ST FROM 20UBA7x",5121,"HK1003-Rev.0E-3",TT_Task,"55902",-,-,-,0,TK_NotStart,12/10/2022,,22/11/2022,,"SI20BZP7-110 FS","SI20BZP7-110","SI20MA-8-10 FS,SI20MAD8-10 FS,SI20MAJ8-10 FS,SI20MAL8-10 FS","SI20MA-8-10,SI20MAD8-10,SI20MAJ8-10,SI20MAL8-10",114,,120,,26,,28,,83,1144,"HK1003 -Blackpoint D2 - Rev.0E DD30092021"
1-4406,SI20BZK7B48,"CABLING MV COUPLING 20BBA - 90BBA & 20BBB - 90BBB",5121,"HK1003-Rev.0E-3",TT_Task,"55902",-,-,-,0,TK_NotStart,05/11/2022,,02/12/2022,,"SI20BZP7-45 FS,SI20BZP7-50 FS,SI20BZP7-160 FS,SI20BZP7-171 FS,SI20BZP7-75 FS,SI20BZP7-20 FS,SI20BZP7-35 FS,SI20BZP7-5 FS,SI20BZP7-174 FS,SI20UBA7C-32 FS,SI20UBA7-104 FS,SI20UBA7-30 FS,SI20UBA7-33 FS,SI20UBA7-36 FS,SI--BZK4-40 FS","SI20BZP7-45,SI20BZP7-50,SI20BZP7-160,SI20BZP7-171,SI20BZP7-75,SI20BZP7-20,SI20BZP7-35,SI20BZP7-5,SI20BZP7-174,SI20UBA7C-32,SI20UBA7-104,SI20UBA7-30,SI20UBA7-33,SI20UBA7-36,SI--BZK4-40","SI20BBA8-46 FS,SI20BBA8-46 FF,SI20BBA8-40 FS,SI20BBA8-41 FS","SI20BBA8-46,SI20BBA8-46,SI20BBA8-40,SI20BBA8-41",118,,121,,27,,28,,84,760,"HK1003 -Blackpoint D2 - Rev.0E DD30092021"
1-4407,SI20BZK7F29,"CABLING STREET AREA",5121,"HK1003-Rev.0E-3",TT_Task,"55902",-,-,-,0,TK_NotStart,11/05/2023,,24/05/2023,,"SI20BZL7-38 FF,SI20BZL7F16 FS,SI20BZL7G15 FS,SI20BZL7E16 FS,SI20BZL7E18 FS,SI20BZL7E17 FS,SI20BZL7F17 FS,SI20BZL7A17 FS,SI20BZL7A18 FS,SI20BZL7E15 FS,SI20BZL7A15 FS,SI20BZL7A19 FS,SI20BZL7C15 FS,SI20LAC6B18 FS,SI--BZK4-40 FS","SI20BZL7-38,SI20BZL7F16,SI20BZL7G15,SI20BZL7E16,SI20BZL7E18,SI20BZL7E17,SI20BZL7F17,SI20BZL7A17,SI20BZL7A18,SI20BZL7E15,SI20BZL7A15,SI20BZL7A19,SI20BZL7C15,SI20LAC6B18,SI--BZK4-40","SI20BZK7D10# FF,SI20MB-9-15 FS","SI20BZK7D10#,SI20MB-9-15",144,,146,,33,,34,,97,296,"HK1003 -Blackpoint D2 - Rev.0E DD30092021"
1-4408,CL20UBZ-10,"(RFE) HV CABLE CONDUIT BY CLP - SOUTH OF UBZ01 / CLOSE TO TP-C6",5121,"HK1003-Rev.0E-3",TT_FinMile,"55902",-,-,-,100,TK_Complete,30/06/2021,30/06/2021,30/06/2021,30/06/2021,"SI-----1-01 FS,CLP20UEZ5-84 FS","SI-----1-01,CLP20UEZ5-84","SI-----5-20 FS","SI-----5-20",47,47,47,47,11,11,11,11,19,,"HK1003 -Blackpoint D2 - Rev.0E DD30092021"
1-4409,SI20BZK7-190,"CABLING TO 20UBA1110/20 AND ULA FROM EXTERNAL",5121,"HK1003-Rev.0E-3",TT_Task,"55902",-,-,-,0,TK_NotStart,26/12/2022,,22/01/2023,,"SI20BZP7-135 FS,SI20BZP7-60 FS,SI20BZP7-160 FS,SI20BZP7-80 FS,SI20BZP7-172 FS,SI20BZP7-75 FS,SI20BZP7-15 FS,SI20BZP7-20 FS,SI20BZP7-198 FS,SI20BZP7D18 FS,SI20UBA7L16 FS,SI20UBA7L16 FF,SI20BZP7-189 FS,SI--BZK4-40 FS","SI20BZP7-135,SI20BZP7-60,SI20BZP7-160,SI20BZP7-80,SI20BZP7-172,SI20BZP7-75,SI20BZP7-15,SI20BZP7-20,SI20BZP7-198,SI20BZP7D18,SI20UBA7L16,SI20UBA7L16,SI20BZP7-189,SI--BZK4-40","SI20B--8-51 FS,SI20HA-8-25 FS,SI20BF-8-19 FS,SI20HSJ8-11 FS","SI20B--8-51,SI20HA-8-25,SI20BF-8-19,SI20HSJ8-11",125,,129,,29,,30,,87,680,"HK1003 -Blackpoint D2 - Rev.0E DD30092021"
1-4410,CL20UBZ-15,"(RFE) CONTROL CABLE CONDUIT BY CLP - SOUTH OF UBZ01 / CLOSE TO TP-C6",5121,"HK1003-Rev.0E-3",TT_FinMile,"55902",-,-,-,100,TK_Complete,30/06/2021,30/06/2021,30/06/2021,30/06/2021,"SI-----1-01 FS,CLP20UEZ5-84 FS","SI-----1-01,CLP20UEZ5-84","SI-----5-20 FS","SI-----5-20",47,47,47,47,11,11,11,11,19,,"HK1003 -Blackpoint D2 - Rev.0E DD30092021"
1-4411,SI20UEY2-81,"BASIC DESIGN / BASIC BUILDING DESIGN INCL. 3D MODEL 20UEY02",5121,"HK1003-Rev.0E-3",TT_Task,"55902",-,-,-,100,TK_Complete,12/06/2021,12/06/2021,02/07/2021,02/07/2021,"SI20UEY2-86 FS,SI20UEY2-86 FF","SI20UEY2-86,SI20UEY2-86","SI20UEY2-82 FS","SI20UEY2-82",45,45,47,47,10,10,11,11,17,,"HK1003 -Blackpoint D2 - Rev.0E DD30092021"
1-4412,SI20UEY2-86,"(MS3) CONCRETE STRUCTURE FINAL DIMENSIONS, LOADS AVAILABLE 20UEY02",5121,"HK1003-Rev.0E-3",TT_FinMile,"55902",-,-,-,100,TK_Complete,11/06/2021,11/06/2021,11/06/2021,11/06/2021,"SI-----2G60 FS,SI--UMY2-60 FS,SI20UEY2-60 FS","SI-----2G60,SI--UMY2-60,SI20UEY2-60","SI20UEY2-81 FS,SI20UEY2-81 FF","SI20UEY2-81,SI20UEY2-81",44,44,44,44,10,10,10,10,17,,"HK1003 -Blackpoint D2 - Rev.0E DD30092021"
1-4413,SI20UEY5-104,"(RFE) FOUNDATION 20UEY02",5121,"HK1003-Rev.0E-3",TT_FinMile,"55902",-,-,-,0,TK_NotStart,03/03/2022,,03/03/2022,,"SI20UEY5-102 FS","SI20UEY5-102","SI20UEY5-15 FS,SI20UEY5-10 FS,SI20UEY6-50 FS,SI20UEY6-55 FS,SI20UEY6-70 FS","SI20UEY5-15,SI20UEY5-10,SI20UEY6-50,SI20UEY6-55,SI20UEY6-70",82,,82,,19,,19,,51,1016,"HK1003 -Blackpoint D2 - Rev.0E DD30092021"
1-4414,SI20UEY5-102,"CONSTRUCTION FOUNDATION 20UEY02",5121,"HK1003-Rev.0E-3",TT_Task,"55902",-,-,-,0,TK_NotStart,04/02/2022,,03/03/2022,,"SI20UEY5-103 FS","SI20UEY5-103","SI20UEY5-104 FS","SI20UEY5-104",78,,82,,18,,19,,48,1016,"HK1003 -Blackpoint D2 - Rev.0E DD30092021"
1-4415,SI20UEY5-103,"(H) START PLACING FORMWORK 20UEY02",5121,"HK1003-Rev.0E-3",TT_Mile,"55902",-,-,-,0,TK_NotStart,04/02/2022,,04/02/2022,,"SI20UEY2-88 SS,SI20UEY5-101 FS,SI20UEY2-93 FS","SI20UEY2-88,SI20UEY5-101,SI20UEY2-93","SI20UEY5-102 FS","SI20UEY5-102",78,,78,,18,,18,,48,1016,"HK1003 -Blackpoint D2 - Rev.0E DD30092021"
1-4416,SI20UEY5-101,"WORK PREPARATION, EXCAVATION 20UEY02",5121,"HK1003-Rev.0E-3",TT_Task,"55902",-,-,-,0,TK_NotStart,14/01/2022,,03/02/2022,,"SI20UEY2-88 FS,SI-P222-84 FS,SI20UEY2-91 FS,SI20UEY5-100 FS","SI20UEY2-88,SI-P222-84,SI20UEY2-91,SI20UEY5-100","SI20UEY5-103 FS","SI20UEY5-103",75,,78,,17,,18,,45,1016,"HK1003 -Blackpoint D2 - Rev.0E DD30092021"
1-4417,SI20UEY2-83,"PREPARATION FOUNDATION GROUNDING DWGS 20UEY02",5121,"HK1003-Rev.0E-3",TT_Task,"55902",-,-,-,100,TK_Complete,25/08/2021,25/08/2021,07/09/2021,07/09/2021,"SI20UEY2-82 FF","SI20UEY2-82","SI20UEY2-88 FS","SI20UEY2-88",55,55,57,57,12,12,13,13,27,,"HK1003 -Blackpoint D2 - Rev.0E DD30092021"
1-4418,SI20UEY2-82,"DETAIL DESIGN CONCRETE STRUCTURE 20UEY02",5121,"HK1003-Rev.0E-3",TT_Task,"55902",-,-,-,100,TK_Complete,03/07/2021,03/07/2021,07/09/2021,07/09/2021,"SI20UEY2-81 FS,SI--UE-2E37 FS","SI20UEY2-81,SI--UE-2E37","SI20UEY2-83 FF,SI20UEY2-88 FS,SI20UEY2-84 FS","SI20UEY2-83,SI20UEY2-88,SI20UEY2-84",48,48,57,57,11,11,13,13,20,,"HK1003 -Blackpoint D2 - Rev.0E DD30092021"
1-4419,SI20UEY2-88,"(F) CONCRETE STRUCTURE DWGS ON SITE RELEASED FOR EXECUTION 20UEY02",5121,"HK1003-Rev.0E-3",TT_FinMile,"55902",-,-,-,0,TK_NotStart,13/01/2022,,13/01/2022,,"SI20UEY2-82 FS,SI20UEY2-83 FS,SI20UEY2-87 FS","SI20UEY2-82,SI20UEY2-83,SI20UEY2-87","SI20UEY5-103 SS,SI20UEY5-101 FS","SI20UEY5-103,SI20UEY5-101",75,,75,,17,,17,,45,1016,"HK1003 -Blackpoint D2 - Rev.0E DD30092021"
1-4420,SI20UEY2-85,"BD - SUBMISSION & APPROVAL - DETAIL DESIGN CONCRETE 20UEY02",5121,"HK1003-Rev.0E-3",TT_Task,"55902",-,-,-,0,TK_NotStart,10/10/2021,,08/12/2021,,"SI20UEY2-84 SS,SI-P221-600& FS,SI--UBA2-96 SS","SI20UEY2-84,SI-P221-600&,SI--UBA2-96","SI20UEY2-87 FS,SI20UBZ2-70 SS,SI20ULY2-30 SS,SI20UEY2-91 FS","SI20UEY2-87,SI20UBZ2-70,SI20ULY2-30,SI20UEY2-91",62,,70,,14,,16,,33,1000,"HK1003 -Blackpoint D2 - Rev.0E DD30092021"
1-4421,SI20UEY2-84,"CLIENT - REVIEW - DETAIL DESIGN CONCRETE 20UEY02",5121,"HK1003-Rev.0E-3",TT_Task,"55902",-,-,-,88,TK_Active,08/09/2021,08/09/2021,02/10/2021,,"SI20UEY2-82 FS","SI20UEY2-82","SI20UEY2-85 SS","SI20UEY2-85",57,57,61,,13,13,14,,29,1080,"HK1003 -Blackpoint D2 - Rev.0E DD30092021"
1-4422,SI20UEY2-87,"BD - CONSENT LETTER DETAIL DESIGN CONCRETE 20UEY02",5121,"HK1003-Rev.0E-3",TT_Task,"55902",-,-,-,0,TK_NotStart,09/12/2021,,05/01/2022,,"SI20UEY2-85 FS","SI20UEY2-85","SI20UEY2-88 FS,SI20UEY2-93 FS","SI20UEY2-88,SI20UEY2-93",70,,74,,16,,17,,41,1080,"HK1003 -Blackpoint D2 - Rev.0E DD30092021"
1-4423,SI-P221-600&,"BD - SUBMISSION - DETAIL DESIGN CONCRETE 20UEY02",5121,"HK1003-Rev.0E-3",TT_Mile,"55902",-,-,-,0,TK_NotStart,10/10/2021,,10/10/2021,,"SI-----1-05 FS","SI-----1-05","SI20UEY2-85 FS","SI20UEY2-85",62,,62,,14,,14,,33,1000,"HK1003 -Blackpoint D2 - Rev.0E DD30092021"
1-4424,SI20UMC5Y48,"(RFE) CONCRETE WORKS LDK PT+TRENCH 20UMC",5121,"HK1003-Rev.0E-3",TT_FinMile,"55902",-,-,-,0,TK_NotStart,06/12/2021,,06/12/2021,,"SI20UMC5Y47 FS,SI20UMC5Y47.25 FS,SI20UMC5Y47.35 FS","SI20UMC5Y47,SI20UMC5Y47.25,SI20UMC5Y47.35","SI20UMC5B90 FF,SI20UMC5A15#1 FF","SI20UMC5B90,SI20UMC5A15#1",70,,70,,16,,16,,41,880,"HK1003 -Blackpoint D2 - Rev.0E DD30092021"
1-4425,SI20BFT8-78,"(TOP-20BFT02) LV-TRANSFORMER 20BFT02",5121,"HK1003-Rev.0E-3",TT_FinMile,"55902",-,-,-,0,TK_NotStart,27/03/2023,,27/03/2023,,"SI--9998-20& FS,SI20UBA7-17 FS,SI20BFT7-15 FS,SI20UBA7-104 FS,SI20BZK7A28 FS","SI--9998-20&,SI20UBA7-17,SI20BFT7-15,SI20UBA7-104,SI20BZK7A28","SI20BFT8-76 FS","SI20BFT8-76",138,,138,,32,,32,,93,104,"HK1003 -Blackpoint D2 - Rev.0E DD30092021"
1-4426,SI20UEY5-108,"(RFE) FOUNDATION 20UEY01 PART 2",5121,"HK1003-Rev.0E-3",TT_FinMile,"55902",-,-,-,0,TK_NotStart,08/03/2022,,08/03/2022,,"SI20UEY5-106 FS","SI20UEY5-106","SI20UEY6-15 FS,SI20UEY6-70 FS,SI20UEY6-50 FS,SI20UEY6-55 FS,SI20UEY6-60 FS,SI20UEY6-80 FS,SI20UEY6-65 FS,SI20BZP7-197 FS","SI20UEY6-15,SI20UEY6-70,SI20UEY6-50,SI20UEY6-55,SI20UEY6-60,SI20UEY6-80,SI20UEY6-65,SI20BZP7-197",83,,83,,19,,19,,52,1184,"HK1003 -Blackpoint D2 - Rev.0E DD30092021"
1-4427,SI20UEY5-106,"CONSTRUCTION FOUNDATION 20UEY01 PART 2",5121,"HK1003-Rev.0E-3",TT_Task,"55902",-,-,-,0,TK_NotStart,16/02/2022,,08/03/2022,,"SI20UEY5-107 FS","SI20UEY5-107","SI20UEY5-108 FS","SI20UEY5-108",80,,83,,18,,19,,50,1184,"HK1003 -Blackpoint D2 - Rev.0E DD30092021"
1-4428,SI20UEY5-107,"(H) START PLACING FORMWORK 20UEY01 PART 2",5121,"HK1003-Rev.0E-3",TT_Mile,"55902",-,-,-,0,TK_NotStart,16/02/2022,,16/02/2022,,"SI20UEY5-105 FS","SI20UEY5-105","SI20UEY5-106 FS","SI20UEY5-106",80,,80,,18,,18,,50,1184,"HK1003 -Blackpoint D2 - Rev.0E DD30092021"
1-4429,SI20UEY5-105,"WORK PREPARATION / EXCAVATION / PILE TRIMMING / PLATE WELDING 20UEY01 PART 2",5121,"HK1003-Rev.0E-3",TT_Task,"55902",-,-,-,0,TK_NotStart,02/02/2022,,15/02/2022,,"SI20UEY2-80 FS,SI20UEY5-100 FS,SI20UMC5B95 FS,SI-P222-84 FS,SI-P222-128 FS","SI20UEY2-80,SI20UEY5-100,SI20UMC5B95,SI-P222-84,SI-P222-128","SI20UEY5-107 FS","SI20UEY5-107",78,,80,,18,,18,,47,1184,"HK1003 -Blackpoint D2 - Rev.0E DD30092021"
1-4430,SI20BBA8-38,"(TOP-20BBB) MV SWITCHGEAR 20BBB",5121,"HK1003-Rev.0E-3",TT_FinMile,"55902",-,-,-,0,TK_NotStart,28/03/2023,,28/03/2023,,"SI20UBA7-17 FS,SI20UBA7-15 FS,SI20UBA7-25 FS,SI20UBA7-104 FS","SI20UBA7-17,SI20UBA7-15,SI20UBA7-25,SI20UBA7-104","SI20BBA8-25 FS","SI20BBA8-25",138,,138,,32,,32,,93,136,"HK1003 -Blackpoint D2 - Rev.0E DD30092021"
1-4431,SI20B--8-52,"MV AVAILABLE (BACK ENERGISING) VIA 90BBA",5121,"HK1003-Rev.0E-3",TT_FinMile,"55902",-,-,-,0,TK_NotStart,28/03/2023,,28/03/2023,,"SI20BB8-45 FS,SI20CPD8-35 FS,SI--SGM6-15 FS,SI20TPI23A8-30 FS,SI20BBA7-52 FS,SI-----8-7 FS,SI20E--7-15& FS,SI20UBA5-60 FS,SI20UBA5C-20 FS,SI20UBA5-46 FS,SI20UBA5-47 FS","SI20BB8-45,SI20CPD8-35,SI--SGM6-15,SI20TPI23A8-30,SI20BBA7-52,SI-----8-7,SI20E--7-15&,SI20UBA5-60,SI20UBA5C-20,SI20UBA5-46,SI20UBA5-47","SI20GHD8A25 FS,SI20MBX8E25 FS,SI20MBX8-25 FS,SI20MB-8E25 FS,SI20MBA8-25 FS,SI20MBL8-25 FS,SI20MKW8H25 FS,SI20MBA8E25 FS,SI20MB-8-25 FS,SI20GHD8A25 SS,SI20MBV8H25 FS,SI20MBH8-25 FS,SI20CJT8-20 FS,SI20BBA8-37 FS,SI20LDK8B25 FS,SI20BB-9-15# FF,SI20PAD8-57 FS,SI20PAD8-58 FS,SI20PAD8-59 FS,SI20SAM8-26 FS,SI20--P6-78 FS,SI20--P6-76 FS,SI20GKB8H25 FS,SI20UBH8-27 FS,SI20HSJ8-26 FS,SI20BBA8-37 FF,SI20BBA8-25 FS,SI20SGC8-26 FS,SI20SGC8-31 FS,SI20SGM8-42 FS,SI20CYA8-30 FS,SI20GM-8B27 FS,SI20GHC8H16 FS,SI20BZL8A27 FS,SI20PCB8M25 FS","SI20GHD8A25,SI20MBX8E25,SI20MBX8-25,SI20MB-8E25,SI20MBA8-25,SI20MBL8-25,SI20MKW8H25,SI20MBA8E25,SI20MB-8-25,SI20GHD8A25,SI20MBV8H25,SI20MBH8-25,SI20CJT8-20,SI20BBA8-37,SI20LDK8B25,SI20BB-9-15#,SI20PAD8-57,SI20PAD8-58,SI20PAD8-59,SI20SAM8-26,SI20--P6-78,SI20--P6-76,SI20GKB8H25,SI20UBH8-27,SI20HSJ8-26,SI20BBA8-37,SI20BBA8-25,SI20SGC8-26,SI20SGC8-31,SI20SGM8-42,SI20CYA8-30,SI20GM-8B27,SI20GHC8H16,SI20BZL8A27,SI20PCB8M25",138,,138,,32,,32,,93,64,"HK1003 -Blackpoint D2 - Rev.0E DD30092021"
1-4432,SI20BBA8-40,"(TOP-90BBA) MV SWITCHGEAR 90BBA",5121,"HK1003-Rev.0E-3",TT_FinMile,"55902",-,-,-,0,TK_NotStart,27/02/2023,,27/02/2023,,"SI20BZK7B48 FS","SI20BZK7B48","SI20BBA7-51 FS","SI20BBA7-51",134,,134,,31,,31,,92,64,"HK1003 -Blackpoint D2 - Rev.0E DD30092021"
1-4433,SI20BBA8-41,"(TOP-90BBB) MV SWITCHGEAR 90BBB",5121,"HK1003-Rev.0E-3",TT_FinMile,"55902",-,-,-,0,TK_NotStart,15/05/2023,,15/05/2023,,"SI20BZK7B48 FS","SI20BZK7B48","SI20BBA7-55 FS","SI20BBA7-55",145,,145,,33,,33,,97,80,"HK1003 -Blackpoint D2 - Rev.0E DD30092021"
1-4434,SI20BBA8-46,"(TOP-90B01) MV FEEDER TO SWITCHGEAR 90BBA",5121,"HK1003-Rev.0E-3",TT_FinMile,"55902",-,-,-,0,TK_NotStart,06/03/2023,,06/03/2023,,"SI20BZK7B48 FS,SI20BZK7B48 FF,SI20BZK7-50 FS,SI20E--7-25& FS","SI20BZK7B48,SI20BZK7B48,SI20BZK7-50,SI20E--7-25&","SI20BBA7-51 FS","SI20BBA7-51",135,,135,,31,,31,,92,64,"HK1003 -Blackpoint D2 - Rev.0E DD30092021"
1-4435,SI20BBA8-47,"(TOP-90B02) MV FEEDER TO SWITCHGEAR 90BBB",5121,"HK1003-Rev.0E-3",TT_FinMile,"55902",-,-,-,0,TK_NotStart,06/06/2023,,06/06/2023,,"SI20BZK7-202 FS,SI20E--7-30& FS","SI20BZK7-202,SI20E--7-30&","SI20BBA7-57 FS","SI20BBA7-57",148,,148,,34,,34,,98,80,"HK1003 -Blackpoint D2 - Rev.0E DD30092021"
1-4436,SI20BBA8-48,"(TOP-20B01) MV FEEDER TO SWITCHGEAR 20BBA",5121,"HK1003-Rev.0E-3",TT_FinMile,"55902",-,-,-,0,TK_NotStart,28/03/2023,,28/03/2023,,"SI20UBA7-17 FS,SI20UBA7-15 FS,SI20UBA7-25 FS,SI20UBA7-104 FS","SI20UBA7-17,SI20UBA7-15,SI20UBA7-25,SI20UBA7-104","SI20BBA8-37 FS","SI20BBA8-37",138,,138,,32,,32,,93,152,"HK1003 -Blackpoint D2 - Rev.0E DD30092021"
1-4437,SI20BBA8-49,"(TOP-20B02) MV FEEDER TO SWITCHGEAR 20BBB",5121,"HK1003-Rev.0E-3",TT_FinMile,"55902",-,-,-,0,TK_NotStart,11/04/2023,,11/04/2023,,"SI20UBA7-17 FS,SI20UBA7-15 FS,SI20UBA7-25 FS,SI20UBA7-104 FS","SI20UBA7-17,SI20UBA7-15,SI20UBA7-25,SI20UBA7-104","SI20BBA8-35 FS","SI20BBA8-35",140,,140,,32,,32,,94,136,"HK1003 -Blackpoint D2 - Rev.0E DD30092021"
1-4438,SI20BF-8-19,"(TOP-20BFF) LV SWITCHGEAR BFF/BMF (HRSG)",5121,"HK1003-Rev.0E-3",TT_FinMile,"55902",-,-,-,0,TK_NotStart,10/04/2023,,10/04/2023,,"SI20UBA7L16 FS,SI20BZK7-200 FS,SI20BZK7-190 FS,SI20UBA7L16 FF,SI20BZK7-180 FS,SI20BZK7-187 FS","SI20UBA7L16,SI20BZK7-200,SI20BZK7-190,SI20UBA7L16,SI20BZK7-180,SI20BZK7-187","SI20BF-8-21 FS","SI20BF-8-21",140,,140,,32,,32,,94,56,"HK1003 -Blackpoint D2 - Rev.0E DD30092021"
1-4439,SI20BF-8-21,"COMMISSIONING LV SWITCHGEAR BFF/BMF (HRSG)",5121,"HK1003-Rev.0E-3",TT_Task,"55902",-,-,-,0,TK_NotStart,11/04/2023,,17/04/2023,,"SI20BF-8-19 FS,SI20B--8-51 SS,SI20B--8-50 FS","SI20BF-8-19,SI20B--8-51,SI20B--8-50","SI20BF-8-25 FS","SI20BF-8-25",140,,141,,32,,32,,94,56,"HK1003 -Blackpoint D2 - Rev.0E DD30092021"
1-4440,SI--BFT8-26,"(TOP-20BFT04) TRANSFORMER 20BFT04",5121,"HK1003-Rev.0E-3",TT_FinMile,"55902",-,-,-,0,TK_NotStart,17/05/2023,,17/05/2023,,"SI--BHT7-20 FS,SI20BZK7B46 FS,SI20SGY7-18 FS,SI20SGY7-19 FS","SI--BHT7-20,SI20BZK7B46,SI20SGY7-18,SI20SGY7-19","SI--BFT8-27 FS","SI--BFT8-27",145,,145,,33,,33,,97,72,"HK1003 -Blackpoint D2 - Rev.0E DD30092021"
1-4441,SI--BFT8-27,"COMMISSIONING LV TRANSFORMER 20BFT04",5121,"HK1003-Rev.0E-3",TT_Task,"55902",-,-,-,0,TK_NotStart,18/05/2023,,24/05/2023,,"SI--BFT8-26 FS,SI--BFT8-25 SS,SI20SGC8-31 FS","SI--BFT8-26,SI--BFT8-25,SI20SGC8-31","SI20PAD8-55 SS","SI20PAD8-55",145,,146,,34,,34,,97,72,"HK1003 -Blackpoint D2 - Rev.0E DD30092021"
1-4442,SI20ACA8-26,"(TOP-20ACA) HV SWITCHGEAR IN FRONT OF 20BAT (GIL)",5121,"HK1003-Rev.0E-3",TT_FinMile,"55902",-,-,-,0,TK_NotStart,27/02/2023,,27/02/2023,,"SI20ACA7-86 FS,SI20ACA7-85 FS","SI20ACA7-86,SI20ACA7-85","SI20ACA9-85 FS","SI20ACA9-85",134,,134,,31,,31,,92,240,"HK1003 -Blackpoint D2 - Rev.0E DD30092021"
1-4443,SI20ACA8-27,"(TOP-20AC) HV FEEDER",5121,"HK1003-Rev.0E-3",TT_FinMile,"55902",-,-,-,0,TK_NotStart,27/02/2023,,27/02/2023,,"CL20ACA7-80 FS,CL20ACA7-82 FS,SI20ACA7-83 FS,SI20ACA7-85 FS","CL20ACA7-80,CL20ACA7-82,SI20ACA7-83,SI20ACA7-85","SI20ACA9-85 FS","SI20ACA9-85",134,,134,,31,,31,,92,240,"HK1003 -Blackpoint D2 - Rev.0E DD30092021"
1-4444,SI20BFT8-79,"(TOP-20MKC) SEE/SFC EQUIPMENT",5121,"HK1003-Rev.0E-3",TT_FinMile,"55902",-,-,-,0,TK_NotStart,13/03/2023,,13/03/2023,,"SI20M--7A15 FS,SI20M--7A16 FS,SI20BZK7A28 FS","SI20M--7A15,SI20M--7A16,SI20BZK7A28","SI20M--8-25 FS,SI20M--8-68 FS,SI20M--8-66 FS","SI20M--8-25,SI20M--8-68,SI20M--8-66",136,,136,,31,,31,,92,184,"HK1003 -Blackpoint D2 - Rev.0E DD30092021"
1-4445,SI20UBA8G29,"COMMISSIONING ELECTRICAL MODULES 20UBA7710/20",5121,"HK1003-Rev.0E-3",TT_Task,"55902",-,-,-,0,TK_NotStart,14/02/2023,,20/02/2023,,"SI20UBA8-12 FS,SI20BFA8-25 FS","SI20UBA8-12,SI20BFA8-25","SI20BU-8-25 SS,SI--BRU8-21 SS","SI20BU-8-25,SI--BRU8-21",132,,133,,30,,31,,90,16,"HK1003 -Blackpoint D2 - Rev.0E DD30092021"
1-4446,SI20UBA8G30,"COMMISSIONING ELECTRICAL MODULES 20UBA7110/7210/7410",5121,"HK1003-Rev.0E-3",TT_Task,"55902",-,-,-,0,TK_NotStart,07/02/2023,,13/02/2023,,"SI20UBA8-12 FS,SI20BFA8-36 FS","SI20UBA8-12,SI20BFA8-36","SI20BFA8-25 SS","SI20BFA8-25",131,,132,,30,,30,,89,16,"HK1003 -Blackpoint D2 - Rev.0E DD30092021"
1-4447,SI20BB8-45,"COMMISSIONING ELECTRICAL INTERFACE GRID/PLANT (6.6kV MV CONNECTION)",5121,"HK1003-Rev.0E-3",TT_Task,"55902",-,-,-,0,TK_NotStart,22/03/2023,,28/03/2023,,"SI20BBA8-36 FS,SI20CHA8-26 FS,SI20BBA7-51 FS","SI20BBA8-36,SI20CHA8-26,SI20BBA7-51","SI20B--8-52 FS,SI20BBA7-52 FS","SI20B--8-52,SI20BBA7-52",137,,138,,32,,32,,93,64,"HK1003 -Blackpoint D2 - Rev.0E DD30092021"
1-4448,SI20CHA8-26,"COMMISSIONING UNIT PROTECTION FOR BBA",5121,"HK1003-Rev.0E-3",TT_Task,"55902",-,-,-,0,TK_NotStart,08/03/2023,,21/03/2023,,"SI20BBA8-36 FS,SI20BBA7-51 FF","SI20BBA8-36,SI20BBA7-51","SI20BB8-45 FS","SI20BB8-45",135,,137,,31,,32,,92,64,"HK1003 -Blackpoint D2 - Rev.0E DD30092021"
1-4449,SI20BFC2-80,"QUOTATION STAGE LV- / DC-SWITCHGEAR 20BFC/BFD",5121,"HK1003-Rev.0E-3",TT_Task,"55902",-,-,-,100,TK_Complete,28/05/2021,28/05/2021,08/07/2021,08/07/2021,"SI20BFC2-75 FS","SI20BFC2-75","SI20BFC2Z85 FS","SI20BFC2Z85",42,42,48,48,10,10,11,11,14,,"HK1003 -Blackpoint D2 - Rev.0E DD30092021"
1-4450,SI20BFC2-15,"BASIC DESIGN / SPECIFICATION LV- / DC-SWITCHGEAR 20BFC/BFD",5121,"HK1003-Rev.0E-3",TT_Task,"55902",-,-,-,100,TK_Complete,02/04/2021,02/04/2021,27/05/2021,27/05/2021,"SI--BFF2-15 SS","SI--BFF2-15","SI20BFC2-75 FS","SI20BFC2-75",34,34,42,42,8,8,9,9,7,,"HK1003 -Blackpoint D2 - Rev.0E DD30092021"
1-4451,SI20BFC2-75,"RFQ LV- / DC-SWITCHGEAR 20BFC/BFD",5121,"HK1003-Rev.0E-3",TT_Mile,"55902",-,-,-,100,TK_Complete,28/05/2021,28/05/2021,28/05/2021,28/05/2021,"SI20BFC2-15 FS","SI20BFC2-15","SI20BFC2-80 FS","SI20BFC2-80",42,42,42,42,10,10,10,10,14,,"HK1003 -Blackpoint D2 - Rev.0E DD30092021"
1-4452,SI--BZP2-93,"DETAIL DESIGN CABLE SUPPORT SYSTEM 20UBF AREA (FIRST SUBMISSION)",5121,"HK1003-Rev.0E-3",TT_Task,"55902",-,-,-,100,TK_Complete,12/08/2021,12/08/2021,26/08/2021,26/08/2021,"SI--BZP2-15 FS,SI--UBF2-90 FS,SI--UBF2-77 FS,SI--UBF2-70 FS,SI--BZP2-14 FS","SI--BZP2-15,SI--UBF2-90,SI--UBF2-77,SI--UBF2-70,SI--BZP2-14","","",53,53,55,55,12,12,13,13,25,,"HK1003 -Blackpoint D2 - Rev.0E DD30092021"
1-4453,SI--BZP2-94,"DETAIL DESIGN CABLE SUPPORT SYSTEM 20UBA71 (FIRST SUBMISSION)",5121,"HK1003-Rev.0E-3",TT_Task,"55902",-,-,-,0,TK_NotStart,14/10/2021,,28/10/2021,,"SI--BZP2-97 FS","SI--BZP2-97","SI--BZP2-96 SS","SI--BZP2-96",62,,64,,14,,15,,34,296,"HK1003 -Blackpoint D2 - Rev.0E DD30092021"
1-4454,SI--BZP2-95,"DETAIL DESIGN CABLE SUPPORT SYSTEM 20UBA11 (FIRST SUBMISSION)",5121,"HK1003-Rev.0E-3",TT_Task,"55902",-,-,-,47,TK_Active,23/09/2021,23/09/2021,07/10/2021,,"","","SI--BZP2-97 SS","SI--BZP2-97",59,59,61,,13,13,14,,30,296,"HK1003 -Blackpoint D2 - Rev.0E DD30092021"
1-4455,SI--BZP2-96,"DETAIL DESIGN CABLE SUPPORT SYSTEM 20UBA81 (FIRST SUBMISSION)",5121,"HK1003-Rev.0E-3",TT_Task,"55902",-,-,-,0,TK_NotStart,21/10/2021,,04/11/2021,,"SI--BZP2-94 SS","SI--BZP2-94","SI--BZP2-99 SS,SI--BZP2-100 FS","SI--BZP2-99,SI--BZP2-100",63,,65,,14,,15,,35,296,"HK1003 -Blackpoint D2 - Rev.0E DD30092021"
1-4456,SI--BZP2-97,"DETAIL DESIGN CABLE SUPPORT SYSTEM 90UBA10 (FIRST SUBMISSION)",5121,"HK1003-Rev.0E-3",TT_Task,"55902",-,-,-,0,TK_NotStart,30/09/2021,,13/10/2021,,"SI--BZP2-95 SS","SI--BZP2-95","SI--BZP2-94 FS","SI--BZP2-94",60,,62,,14,,14,,30,296,"HK1003 -Blackpoint D2 - Rev.0E DD30092021"
1-4457,SI--BZP2-98,"DETAIL DESIGN CABLE SUPPORT SYSTEM 20UMC (FIRST SUBMISSION)",5121,"HK1003-Rev.0E-3",TT_Task,"55902",-,-,-,0,TK_NotStart,02/12/2021,,16/12/2021,,"SI--BZP2-101 FS,SI--BZP2-100 FS","SI--BZP2-101,SI--BZP2-100","SI--BZP2-102 SS","SI--BZP2-102",69,,71,,16,,16,,40,296,"HK1003 -Blackpoint D2 - Rev.0E DD30092021"
1-4458,SI--BZP2-99,"DETAIL DESIGN CABLE SUPPORT SYSTEM 20UMY (FIRST SUBMISSION)",5121,"HK1003-Rev.0E-3",TT_Task,"55902",-,-,-,0,TK_NotStart,28/10/2021,,11/11/2021,,"SI--BZP2-96 SS","SI--BZP2-96","SI--BZP2-101 FS","SI--BZP2-101",64,,66,,15,,15,,36,296,"HK1003 -Blackpoint D2 - Rev.0E DD30092021"
1-4459,SI--BZP2-100,"DETAIL DESIGN CABLE SUPPORT SYSTEM 20ULA (FIRST SUBMISSION)",5121,"HK1003-Rev.0E-3",TT_Task,"55902",-,-,-,0,TK_NotStart,05/11/2021,,19/11/2021,,"SI--BZP2-96 FS","SI--BZP2-96","SI--BZP2-98 FS","SI--BZP2-98",65,,67,,15,,15,,37,392,"HK1003 -Blackpoint D2 - Rev.0E DD30092021"
1-4460,SI--BZP2-101,"DETAIL DESIGN CABLE SUPPORT SYSTEM 20UEY/00UEN/20UMX (FIRST SUBMISSION)",5121,"HK1003-Rev.0E-3",TT_Task,"55902",-,-,-,0,TK_NotStart,12/11/2021,,26/11/2021,,"SI--BZP2-99 FS","SI--BZP2-99","SI--BZP2-98 FS,SI--BZP2-92 FS","SI--BZP2-98,SI--BZP2-92",66,,68,,15,,16,,38,296,"HK1003 -Blackpoint D2 - Rev.0E DD30092021"
1-4461,SI--BZP2-102,"DETAIL DESIGN CABLE SUPPORT SYSTEM 20URA/20URD AREA(FIRST SUBMISSION)",5121,"HK1003-Rev.0E-3",TT_Task,"55902",-,-,-,0,TK_NotStart,10/12/2021,,24/12/2021,,"SI--BZP2-98 SS","SI--BZP2-98","SI--BZP2-103 SS","SI--BZP2-103",70,,72,,16,,17,,42,296,"HK1003 -Blackpoint D2 - Rev.0E DD30092021"
1-4462,SI--BZL2-89,"CHECK OF BASIC DESIGN WITH ATKINS",5121,"HK1003-Rev.0E-3",TT_Task,"55902",-,-,-,100,TK_Complete,29/04/2021,29/04/2021,12/05/2021,12/05/2021,"SI--BZL2-15 FS,SI--CYA2-87 FS","SI--BZL2-15,SI--CYA2-87","SI--BZL2-75 FS","SI--BZL2-75",38,38,40,40,9,9,9,9,10,,"HK1003 -Blackpoint D2 - Rev.0E DD30092021"
1-4463,SI--CYA2-86,"BASIC DESIGN HANDOVER ATKINS TO SIEMENS - EXTRA-LOW VOLTAGE SYSTEMS",5121,"HK1003-Rev.0E-3",TT_Mile,"55902",-,-,-,0,TK_NotStart,05/12/2021,,05/12/2021,,"SI--CYA2-15 FS","SI--CYA2-15","SI--CYA2-88 FS","SI--CYA2-88",70,,70,,16,,16,,40,584,"HK1003 -Blackpoint D2 - Rev.0E DD30092021"
1-4464,SI--CYA2-87,"BASIC DESIGN HANDOVER ATKINS TO SIEMENS - LIGHTING & SMALL POWER SYSTEM",5121,"HK1003-Rev.0E-3",TT_Mile,"55902",-,-,-,100,TK_Complete,29/04/2021,29/04/2021,29/04/2021,29/04/2021,"SI--BZL2-15 FS,SI--CYA2-95 FS","SI--BZL2-15,SI--CYA2-95","SI--BZL2-89 FS","SI--BZL2-89",38,38,38,38,9,9,9,9,10,,"HK1003 -Blackpoint D2 - Rev.0E DD30092021"
1-4465,SI--CYA2-88,"BASIC DESIGN HANDOVER ATKINS TO SIEMENS - PABX TELEPHONE SYSTEM",5121,"HK1003-Rev.0E-3",TT_Mile,"55902",-,-,-,0,TK_NotStart,05/12/2021,,05/12/2021,,"SI--CYA2-86 FS","SI--CYA2-86","SI--CYA2-89 FS","SI--CYA2-89",70,,70,,16,,16,,40,584,"HK1003 -Blackpoint D2 - Rev.0E DD30092021"
1-4466,SI--CYA2-89,"BASIC DESIGN HANDOVER ATKINS TO SIEMENS - PASSIVE LAN NETWORK",5121,"HK1003-Rev.0E-3",TT_Mile,"55902",-,-,-,0,TK_NotStart,05/12/2021,,05/12/2021,,"SI--CYA2-88 FS","SI--CYA2-88","SI--CYA2-90 FS","SI--CYA2-90",70,,70,,16,,16,,40,584,"HK1003 -Blackpoint D2 - Rev.0E DD30092021"
1-4467,SI--CYA2-90,"BASIC DESIGN HANDOVER ATKINS TO SIEMENS - CLOCK SYSTEM",5121,"HK1003-Rev.0E-3",TT_Mile,"55902",-,-,-,0,TK_NotStart,05/12/2021,,05/12/2021,,"SI--CYA2-89 FS","SI--CYA2-89","SI--CYA2-91 FS","SI--CYA2-91",70,,70,,16,,16,,40,584,"HK1003 -Blackpoint D2 - Rev.0E DD30092021"
1-4468,SI--CYA2-91,"BASIC DESIGN HANDOVER ATKINS TO SIEMENS - RADIO COMMUNICATION",5121,"HK1003-Rev.0E-3",TT_Mile,"55902",-,-,-,0,TK_NotStart,05/12/2021,,05/12/2021,,"SI--CYA2-90 FS","SI--CYA2-90","SI--CYA2-92 FS","SI--CYA2-92",70,,70,,16,,16,,40,584,"HK1003 -Blackpoint D2 - Rev.0E DD30092021"
1-4469,SI--CYA2-92,"BASIC DESIGN HANDOVER ATKINS TO SIEMENS - CCTV SYSTEM",5121,"HK1003-Rev.0E-3",TT_Mile,"55902",-,-,-,0,TK_NotStart,05/12/2021,,05/12/2021,,"SI--CYA2-91 FS","SI--CYA2-91","SI--CYA2-93 FS","SI--CYA2-93",70,,70,,16,,16,,40,584,"HK1003 -Blackpoint D2 - Rev.0E DD30092021"
1-4470,SI--CYA2-93,"BASIC DESIGN HANDOVER ATKINS TO SIEMENS - ACCESS CONTROL SYSTEM",5121,"HK1003-Rev.0E-3",TT_Mile,"55902",-,-,-,0,TK_NotStart,05/12/2021,,05/12/2021,,"SI--CYA2-92 FS","SI--CYA2-92","SI--CYA2-94 FS","SI--CYA2-94",70,,70,,16,,16,,40,584,"HK1003 -Blackpoint D2 - Rev.0E DD30092021"
1-4471,SI--CYA2-94,"BASIC DESIGN HANDOVER ATKINS TO SIEMENS - SIREN SYSTEM",5121,"HK1003-Rev.0E-3",TT_Mile,"55902",-,-,-,0,TK_NotStart,05/12/2021,,05/12/2021,,"SI--CYA2-93 FS","SI--CYA2-93","SI--CYA3-25 FS","SI--CYA3-25",70,,70,,16,,16,,40,584,"HK1003 -Blackpoint D2 - Rev.0E DD30092021"
1-4472,SI---1P6A6,"UNPACKING & SORTING PIPING LOT 4",5121,"HK1003-Rev.0E-3",TT_Task,"55902",-,-,-,0,TK_NotStart,07/04/2022,,27/04/2022,,"SI20---4B25 FS,SI---2S6-05& FS","SI20---4B25,SI---2S6-05&","SI---1P6A05 FS","SI---1P6A05",87,,90,,20,,21,,56,696,"HK1003 -Blackpoint D2 - Rev.0E DD30092021"
1-4473,SI---1P6A7,"UNPACKING & SORTING PIPING LOT 5",5121,"HK1003-Rev.0E-3",TT_Task,"55902",-,-,-,0,TK_NotStart,06/05/2022,,26/05/2022,,"SI20---4B26 FS","SI20---4B26","SI---5P6A09 FS","SI---5P6A09",91,,94,,21,,22,,63,984,"HK1003 -Blackpoint D2 - Rev.0E DD30092021"
1-4474,SI---1P6A8,"UNPACKING & SORTING PIPING LOT 6",5121,"HK1003-Rev.0E-3",TT_Task,"55902",-,-,-,0,TK_NotStart,25/09/2022,,15/10/2022,,"SI20---4B27 FS","SI20---4B27","SI---1P6A9 FS","SI---1P6A9",112,,115,,26,,26,,82,1112,"HK1003 -Blackpoint D2 - Rev.0E DD30092021"
1-4475,SI---1P6A9,"PREFABRICATION ON SITE ALL SYSTEMS  -  TEMP. PIPING",5121,"HK1003-Rev.0E-3",TT_Task,"55902",-,-,-,0,TK_NotStart,16/10/2022,,12/11/2022,,"SI---1P6A8 FS","SI---1P6A8","SI20ZTB6A00 FS,SI20ZTA6A00 FS","SI20ZTB6A00,SI20ZTA6A00",115,,119,,26,,27,,83,1112,"HK1003 -Blackpoint D2 - Rev.0E DD30092021"
1-4476,SI20UVM-8E27,"COLD COMMISSIONING PLANT DRAINAGE SYSTEM UVM",5121,"HK1003-Rev.0E-3",TT_Task,"55902",-,-,-,0,TK_NotStart,05/04/2023,,11/04/2023,,"SI20UVM-8E26 FS,SI20TPM25A8-30 FS,SI20TPC1A8-30 FS,SI20TPC2A8-30 FS,SI20TPC3A8-30 FS,SI20TPC4A8-30 FS,SI20TPC5A8-30 FS,SI20TPC6A8-30 FS,SI20TPC7A8-30 FS,SI20TPC8A8-30 FS,SI20TPC9A8-30 FS,SI20TPC10A8-30 FS,SI20BFA8-25 FS,SI20GM-8B27 FS","SI20UVM-8E26,SI20TPM25A8-30,SI20TPC1A8-30,SI20TPC2A8-30,SI20TPC3A8-30,SI20TPC4A8-30,SI20TPC5A8-30,SI20TPC6A8-30,SI20TPC7A8-30,SI20TPC8A8-30,SI20TPC9A8-30,SI20TPC10A8-30,SI20BFA8-25,SI20GM-8B27","SI20GM-8E25 FS","SI20GM-8E25",139,,140,,32,,32,,94,128,"HK1003 -Blackpoint D2 - Rev.0E DD30092021"
1-4477,SI20UVM-8E26,"(TOP-20GU-01) PLANT DRAINAGE SYSTEM FOR SURFACE AND RAINWATER FROM UVM",5121,"HK1003-Rev.0E-3",TT_FinMile,"55902",-,-,-,0,TK_NotStart,28/03/2023,,28/03/2023,,"SI20HSJ6-15 FS","SI20HSJ6-15","SI20UVM-8E27 FS","SI20UVM-8E27",138,,138,,32,,32,,93,128,"HK1003 -Blackpoint D2 - Rev.0E DD30092021"
1-4478,SI20HSK-8B28,"(TOP-20HSK) HRSG SCR-CAT SYSTEM",5121,"HK1003-Rev.0E-3",TT_FinMile,"55902",-,-,-,0,TK_NotStart,24/07/2023,,24/07/2023,,"SI20L--9I81 FF","SI20L--9I81","SI20M--9-50 FS","SI20M--9-50",155,,155,,36,,36,,99,0,"HK1003 -Blackpoint D2 - Rev.0E DD30092021"
1-4479,SI20SGA8B28,"(TOP-20SGA-02) FIRE FIGHTING FRESH WATER RING MAIN AND OUTDOOR HYDRANTS",5121,"HK1003-Rev.0E-3",TT_FinMile,"55902",-,-,-,0,TK_NotStart,11/03/2023,,11/03/2023,,"SI20SGA6A27 FS","SI20SGA6A27","SI20SGA8B27 FS,SI20SGA8-26 FS,SI20TPF1A8-30 FS,SI20TPF1B8-30 FS,SI20TPF1C8-30 FS,SI20TPF2A8-30 FS","SI20SGA8B27,SI20SGA8-26,SI20TPF1A8-30,SI20TPF1B8-30,SI20TPF1C8-30,SI20TPF2A8-30",136,,136,,31,,31,,92,16,"HK1003 -Blackpoint D2 - Rev.0E DD30092021"
1-4480,SI20PUR8-26,"(TOP-20PUR-02) CATHODIC PROTECTION SYSTEM FOR PAC & ELECTRICAL MODULES",5121,"HK1003-Rev.0E-3",TT_FinMile,"55902",-,-,-,0,TK_NotStart,20/01/2023,,20/01/2023,,"SI20PUR7J17 FS","SI20PUR7J17","SI20B--8-50 FS,SI20PAD8-58 FS","SI20B--8-50,SI20PAD8-58",128,,128,,30,,30,,88,656,"HK1003 -Blackpoint D2 - Rev.0E DD30092021"
1-4481,SI20PUR7J17,"ELECTRICAL ERECTION CATHODIC PROTECTION PAC & ELECTRICAL MODULES",5121,"HK1003-Rev.0E-3",TT_Task,"55902",-,-,-,0,TK_NotStart,23/10/2022,,20/01/2023,,"SI20PUR4J40 FS","SI20PUR4J40","SI20PUR8-26 FS,SI20BZK7D11# SS,SI20BZK7D11# FF","SI20PUR8-26,SI20BZK7D11#,SI20BZK7D11#",116,,128,,27,,30,,84,656,"HK1003 -Blackpoint D2 - Rev.0E DD30092021"
1-4482,SI20PUR8-27,"(TOP-20PUR-01) CATHODIC PROTECTION SYSTEM FOR CONDENSER",5121,"HK1003-Rev.0E-3",TT_FinMile,"55902",-,-,-,0,TK_NotStart,20/01/2023,,20/01/2023,,"SI20PUR7J15 FS","SI20PUR7J15","SI20B--8-50 FS,SI20PAD8-59 FS","SI20B--8-50,SI20PAD8-59",128,,128,,30,,30,,88,656,"HK1003 -Blackpoint D2 - Rev.0E DD30092021"
1-4483,SI20QJ-8B13,"(TOP-20QJA-03) CO2 EMERGENCY SUPPLY SYSTEM",5121,"HK1003-Rev.0E-3",TT_FinMile,"55902",-,-,-,0,TK_NotStart,25/04/2023,,25/04/2023,,"SI20QJ-6B42 FS","SI20QJ-6B42","SI20SAM8-29 FS","SI20SAM8-29",142,,142,,33,,33,,96,8,"HK1003 -Blackpoint D2 - Rev.0E DD30092021"
1-4484,SI20TP-231&,"TP-I13 - UNIT D2 INTERFACE PANEL (00UCA)",5121,"HK1003-Rev.0E-3",TT_Mile,"55902",-,-,-,0,TK_NotStart,04/05/2022,,04/05/2022,,"SI-----1-05 FS","SI-----1-05","SI20TPI13A6-20 FS","SI20TPI13A6-20",91,,91,,21,,21,,61,1968,"HK1003 -Blackpoint D2 - Rev.0E DD30092021"
1-4485,SI20TP-232&,"TP-I1 - UNIT D2 DCIS (D2 Site)",5121,"HK1003-Rev.0E-3",TT_Mile,"55902",-,-,-,0,TK_NotStart,04/05/2022,,04/05/2022,,"SI-----1-05 FS","SI-----1-05","SI20TPI1A6-20 FS","SI20TPI1A6-20",91,,91,,21,,21,,61,1968,"HK1003 -Blackpoint D2 - Rev.0E DD30092021"
1-4486,SI20TP-233&,"TP-I4 - UNIT D2 INTERFACE PANEL (00UCA)",5121,"HK1003-Rev.0E-3",TT_Mile,"55902",-,-,-,0,TK_NotStart,04/05/2022,,04/05/2022,,"SI-----1-05 FS","SI-----1-05","SI20TPI4A7-20 FS","SI20TPI4A7-20",91,,91,,21,,21,,61,1968,"HK1003 -Blackpoint D2 - Rev.0E DD30092021"
1-4487,SI20TP-234&,"TP-I5 - UNIT D2 INTERFACE PANEL (00UCA)",5121,"HK1003-Rev.0E-3",TT_Mile,"55902",-,-,-,0,TK_NotStart,04/05/2022,,04/05/2022,,"SI-----1-05 FS","SI-----1-05","SI20TPI5A7-20 FS","SI20TPI5A7-20",91,,91,,21,,21,,61,1968,"HK1003 -Blackpoint D2 - Rev.0E DD30092021"
1-4488,SI20TP-235&,"TP-I6 - D2 CCTV SYSTEM (D2 SITE)",5121,"HK1003-Rev.0E-3",TT_Mile,"55902",-,-,-,0,TK_NotStart,04/05/2022,,04/05/2022,,"SI-----1-05 FS","SI-----1-05","SI20TPI6A7-20 FS","SI20TPI6A7-20",91,,91,,21,,21,,61,2712,"HK1003 -Blackpoint D2 - Rev.0E DD30092021"
1-4489,SI20TP-236&,"TP-I10 - 6.6kV SWITCHGEAR (UNIT D2 SITE)",5121,"HK1003-Rev.0E-3",TT_Mile,"55902",-,-,-,0,TK_NotStart,04/05/2022,,04/05/2022,,"SI-----1-05 FS","SI-----1-05","SI20TPI10A7-20 FS","SI20TPI10A7-20",91,,91,,21,,21,,61,2016,"HK1003 -Blackpoint D2 - Rev.0E DD30092021"
1-4490,SI20TP-237&,"TP-I17 - UNIT D2 CONTINUOUS EMISSION MONITORING SYSTEM (UNIT D2 SITE)",5121,"HK1003-Rev.0E-3",TT_Mile,"55902",-,-,-,0,TK_NotStart,28/07/2022,,28/07/2022,,"SI-----1-05 FS","SI-----1-05","SI20TPI17A7-20 FS","SI20TPI17A7-20",103,,103,,24,,24,,75,2256,"HK1003 -Blackpoint D2 - Rev.0E DD30092021"
1-4491,SI20TP-238&,"TP-I19i - UNIT D2 DISSOLVED GAS ANALYSIS SYSTEM",5121,"HK1003-Rev.0E-3",TT_Mile,"55902",-,-,-,0,TK_NotStart,04/05/2022,,04/05/2022,,"SI-----1-05 FS","SI-----1-05","SI20TPI19I7-20 FS","SI20TPI19I7-20",91,,91,,21,,21,,61,2936,"HK1003 -Blackpoint D2 - Rev.0E DD30092021"
1-4492,SI20TP-239&,"TP-I19ii - DGA NETWORK SWITCH (00UCA)",5121,"HK1003-Rev.0E-3",TT_Mile,"55902",-,-,-,0,TK_NotStart,04/05/2022,,04/05/2022,,"SI-----1-05 FS","SI-----1-05","SI20TPI19II7-20 FS","SI20TPI19II7-20",91,,91,,21,,21,,61,2936,"HK1003 -Blackpoint D2 - Rev.0E DD30092021"
1-4493,SI20TP-240&,"TP-I21 - UNIT D2 TELECOMMUNICATION PANEL (D2 SITE)",5121,"HK1003-Rev.0E-3",TT_Mile,"55902",-,-,-,0,TK_NotStart,04/05/2022,,04/05/2022,,"SI-----1-05 FS","SI-----1-05","SI20TPI21A7-20 FS","SI20TPI21A7-20",91,,91,,21,,21,,61,2712,"HK1003 -Blackpoint D2 - Rev.0E DD30092021"
1-4494,SI20TP-241&,"TP-I22 - UNIT D2 FIRE DETECTION SYSTEM (D2 SITE)",5121,"HK1003-Rev.0E-3",TT_Mile,"55902",-,-,-,0,TK_NotStart,04/05/2022,,04/05/2022,,"SI-----1-05 FS","SI-----1-05","SI20TPI22A7-20 FS","SI20TPI22A7-20",91,,91,,21,,21,,61,2880,"HK1003 -Blackpoint D2 - Rev.0E DD30092021"
1-4495,SI20TP-242&,"TP-I23 - D2 NETWORK PANEL (00UCA)",5121,"HK1003-Rev.0E-3",TT_Mile,"55902",-,-,-,0,TK_NotStart,04/05/2022,,04/05/2022,,"SI-----1-05 FS","SI-----1-05","SI20TPI23A7-20 FS","SI20TPI23A7-20",91,,91,,21,,21,,61,2080,"HK1003 -Blackpoint D2 - Rev.0E DD30092021"
1-4496,SI20TP-243&,"TP-I15 - UNIT D2 DCIS (D2 SITE)",5121,"HK1003-Rev.0E-3",TT_Mile,"55902",-,-,-,0,TK_NotStart,04/05/2022,,04/05/2022,,"SI-----1-05 FS","SI-----1-05","SI20TPI15A7-20 FS","SI20TPI15A7-20",91,,91,,21,,21,,61,2360,"HK1003 -Blackpoint D2 - Rev.0E DD30092021"
1-4497,SI20TP-244&,"TP-I16 - UNIT D2 DCIS (D2 SITE)",5121,"HK1003-Rev.0E-3",TT_Mile,"55902",-,-,-,0,TK_NotStart,04/05/2022,,04/05/2022,,"SI-----1-05 FS","SI-----1-05","SI20TPI16A7-20 FS","SI20TPI16A7-20",91,,91,,21,,21,,61,2936,"HK1003 -Blackpoint D2 - Rev.0E DD30092021"
1-4498,SI20TP-245&,"TP-I20 - UNIT D2 DCIS (D2 SITE)",5121,"HK1003-Rev.0E-3",TT_Mile,"55902",-,-,-,0,TK_NotStart,04/05/2022,,04/05/2022,,"SI-----1-05 FS","SI-----1-05","SI20TPI20A7-20 FS","SI20TPI20A7-20",91,,91,,21,,21,,61,2320,"HK1003 -Blackpoint D2 - Rev.0E DD30092021"
1-4499,SI20TP-246&,"TP-I13 - UNIT D2 INTERFACE PANEL (00UCA)",5121,"HK1003-Rev.0E-3",TT_Mile,"55902",-,-,-,0,TK_NotStart,04/05/2022,,04/05/2022,,"SI-----1-05 FS","SI-----1-05","SI20TPI13A6-20 FS","SI20TPI13A6-20",91,,91,,21,,21,,61,1968,"HK1003 -Blackpoint D2 - Rev.0E DD30092021"
1-4500,SI20TP-247&,"TP-I18 - UNIT D2 DCIS (D2 SITE)",5121,"HK1003-Rev.0E-3",TT_Mile,"55902",-,-,-,0,TK_NotStart,04/05/2022,,04/05/2022,,"SI-----1-05 FS","SI-----1-05","SI20TPI18A7-20 FS","SI20TPI18A7-20",91,,91,,21,,21,,62,1968,"HK1003 -Blackpoint D2 - Rev.0E DD30092021"
1-4501,SI20TP-248&,"TP-I2i - UNIT D2 INTERFACE PANEL (00UCA)",5121,"HK1003-Rev.0E-3",TT_Mile,"55902",-,-,-,0,TK_NotStart,04/05/2022,,04/05/2022,,"SI-----1-05 FS","SI-----1-05","SI20TPI2I7-20 FS","SI20TPI2I7-20",91,,91,,21,,21,,62,1968,"HK1003 -Blackpoint D2 - Rev.0E DD30092021"
1-4502,SI20TP-249&,"TP-I2ii - EXISTING D1 DCIS PANELS (00UCA)",5121,"HK1003-Rev.0E-3",TT_Mile,"55902",-,-,-,0,TK_NotStart,04/05/2022,,04/05/2022,,"SI-----1-05 FS","SI-----1-05","SI20TPI2II7-20 FS","SI20TPI2II7-20",91,,91,,21,,21,,62,1968,"HK1003 -Blackpoint D2 - Rev.0E DD30092021"
1-4503,SI20TP-250&,"TP-I2iii - EXISTING STATION DCIS PANELS (00UCA)",5121,"HK1003-Rev.0E-3",TT_Mile,"55902",-,-,-,0,TK_NotStart,04/05/2022,,04/05/2022,,"SI-----1-05 FS","SI-----1-05","SI20TPI2III7-20 FS","SI20TPI2III7-20",91,,91,,21,,21,,62,1968,"HK1003 -Blackpoint D2 - Rev.0E DD30092021"
1-4504,SI20TP-251&,"TP-I2iv - INTERFACE MARSHALLING BOXES (BAY 2&5) (400kV Substation)",5121,"HK1003-Rev.0E-3",TT_Mile,"55902",-,-,-,0,TK_NotStart,04/05/2022,,04/05/2022,,"SI-----1-05 FS","SI-----1-05","SI20TPI2IV7-20 FS","SI20TPI2IV7-20",91,,91,,21,,21,,62,1968,"HK1003 -Blackpoint D2 - Rev.0E DD30092021"
1-4505,SI20TP-261&,"TP-E5 - D2 ELECTRICAL / C&I MODULES (D2 Site)",5121,"HK1003-Rev.0E-3",TT_Mile,"55902",-,-,-,0,TK_NotStart,05/12/2022,,05/12/2022,,"SI-----1-05 FS","SI-----1-05","SI20TPE5A7-20 FS","SI20TPE5A7-20",122,,122,,28,,28,,86,528,"HK1003 -Blackpoint D2 - Rev.0E DD30092021"
1-4506,SI20TP-263&,"TP-E8 - D2 OUTDOOR EARTHING GRID (D2 Site)",5121,"HK1003-Rev.0E-3",TT_Mile,"55902",-,-,-,0,TK_NotStart,23/09/2022,,23/09/2022,,"SI-----1-05 FS,SI20BAW5C17 FS","SI-----1-05,SI20BAW5C17","SI20TPE8A7-16 FS","SI20TPE8A7-16",111,,111,,26,,26,,81,3608,"HK1003 -Blackpoint D2 - Rev.0E DD30092021"
1-4507,SI20TP-265&,"TP-E6 - MAIN D2 UPS (D2 Electrical Modules)",5121,"HK1003-Rev.0E-3",TT_Mile,"55902",-,-,-,0,TK_NotStart,27/12/2022,,27/12/2022,,"SI-----1-05 FS","SI-----1-05","SI20TPE6A7-20 FS","SI20TPE6A7-20",125,,125,,29,,29,,87,16,"HK1003 -Blackpoint D2 - Rev.0E DD30092021"
1-4508,SI20TP-266&,"TP-E6ii - EXISTING BPPS CCR 415AV BOARDS / 415V AC STATION ESSENTIAL SERVICES BOARD",5121,"HK1003-Rev.0E-3",TT_Mile,"55902",-,-,-,0,TK_NotStart,27/12/2022,,27/12/2022,,"SI-----1-05 FS","SI-----1-05","SI20TPE6II7-20 FS","SI20TPE6II7-20",125,,125,,29,,29,,87,16,"HK1003 -Blackpoint D2 - Rev.0E DD30092021"
1-4509,SI20TP-267&,"TP-E9 - D2 TEMPORARY CONSTRUCTION AND SITE OFFICE POWER",5121,"HK1003-Rev.0E-3",TT_Mile,"55902",-,-,-,100,TK_Complete,01/07/2021,01/07/2021,01/07/2021,01/07/2021,"SI-----1-05 FS","SI-----1-05","SI-----5-20 FS,CL20TPE9A7-18 FS","SI-----5-20,CL20TPE9A7-18",47,47,47,47,11,11,11,11,20,,"HK1003 -Blackpoint D2 - Rev.0E DD30092021"
1-4510,SI20LCE7A15,"ELECTRICAL ERECTION / VALVES CONDENSATE SYSTEM 20LCE",5121,"HK1003-Rev.0E-3",TT_Task,"55902",-,-,-,0,TK_NotStart,05/12/2022,,11/12/2022,,"SI20LCE6A45 FS","SI20LCE6A45","SI20LCA8M10 FS","SI20LCA8M10",122,,123,,28,,28,,86,1152,"HK1003 -Blackpoint D2 - Rev.0E DD30092021"
1-4511,SI20LCE6A15,"ERECTION, NDT, PT PIPES / VALVES 20LCE",5121,"HK1003-Rev.0E-3",TT_Task,"55902",-,-,-,0,TK_NotStart,17/06/2022,,20/10/2022,,"SI20MAG6-65 FS,SI---1P6A05 FS","SI20MAG6-65,SI---1P6A05","SI20LCE6A45 FS","SI20LCE6A45",97,,115,,22,,27,,70,1152,"HK1003 -Blackpoint D2 - Rev.0E DD30092021"
1-4512,SI20LCE6A45,"INSULATION PIPES / VALVES CONDENSATE 20LCE",5121,"HK1003-Rev.0E-3",TT_Task,"55902",-,-,-,0,TK_NotStart,31/10/2022,,04/12/2022,,"SI20LCE6A15 FS,SI-P2I-15 FS","SI20LCE6A15,SI-P2I-15","SI20LCE7A15 FS","SI20LCE7A15",117,,122,,27,,28,,84,1152,"HK1003 -Blackpoint D2 - Rev.0E DD30092021"
1-4513,SI20PUS7A15,"ELECTRICAL ERECTION / VALVES BIOCIDE GENERATION 20PUS",5121,"HK1003-Rev.0E-3",TT_Task,"55902",-,-,-,0,TK_NotStart,28/11/2022,,04/12/2022,,"SI20PUS6A45 FS","SI20PUS6A45","SI20PAR8-06 FS","SI20PAR8-06",121,,122,,28,,28,,86,1152,"HK1003 -Blackpoint D2 - Rev.0E DD30092021"
1-4514,SI20PUS6A15,"ERECTION, NDT, PT PIPES / VALVES 20PUS",5121,"HK1003-Rev.0E-3",TT_Task,"55902",-,-,-,0,TK_NotStart,24/06/2022,,29/09/2022,,"SI---5P6A09 FS","SI---5P6A09","SI20PUS6A45 FS","SI20PUS6A45",98,,112,,23,,26,,71,1152,"HK1003 -Blackpoint D2 - Rev.0E DD30092021"
1-4515,SI20PUS6A45,"INSULATION PIPES / VALVES BIOCIDE GENERATION 20PUS",5121,"HK1003-Rev.0E-3",TT_Task,"55902",-,-,-,0,TK_NotStart,24/10/2022,,27/11/2022,,"SI20PUS6A15 FS,SI-P2I-15 FS","SI20PUS6A15,SI-P2I-15","SI20PUS7A15 FS","SI20PUS7A15",116,,121,,27,,28,,84,1152,"HK1003 -Blackpoint D2 - Rev.0E DD30092021"
1-4516,SI20PB-7A15,"ELECTRICAL ERECTION / VALVES COOLING WATER MAKE-UP SYSTEM 20PBE/PBQ/PUN",5121,"HK1003-Rev.0E-3",TT_Task,"55902",-,-,-,0,TK_NotStart,28/11/2022,,04/12/2022,,"SI20PB-6A45 FS","SI20PB-6A45","SI20PAB8-05 FS,SI20PAR8-06 FS","SI20PAB8-05,SI20PAR8-06",121,,122,,28,,28,,86,1104,"HK1003 -Blackpoint D2 - Rev.0E DD30092021"
1-4517,SI20PB-6A15,"ERECTION, NDT, PT PIPES / VALVES 20PBE/PBQ/PUN",5121,"HK1003-Rev.0E-3",TT_Task,"55902",-,-,-,0,TK_NotStart,24/06/2022,,29/09/2022,,"SI---5P6A09 FS","SI---5P6A09","SI20PB-6A45 FS","SI20PB-6A45",98,,112,,23,,26,,71,1104,"HK1003 -Blackpoint D2 - Rev.0E DD30092021"
1-4518,SI20PB-6A45,"INSULATION PIPES / VALVES COOLING WATER MAKE-UP SYSTEM 20PBE/PBQ/PUN",5121,"HK1003-Rev.0E-3",TT_Task,"55902",-,-,-,0,TK_NotStart,24/10/2022,,27/11/2022,,"SI20PB-6A15 FS,SI-P2I-15 FS","SI20PB-6A15,SI-P2I-15","SI20PB-7A15 FS","SI20PB-7A15",116,,121,,27,,28,,84,1104,"HK1003 -Blackpoint D2 - Rev.0E DD30092021"
1-4519,SI20PSB7A15,"ELECTRICAL ERECTION / VALVES COOLING WATER 20PSB",5121,"HK1003-Rev.0E-3",TT_Task,"55902",-,-,-,0,TK_NotStart,28/11/2022,,04/12/2022,,"SI20PSB6A45 FS","SI20PSB6A45","SI20PAR8-06 FS","SI20PAR8-06",121,,122,,28,,28,,86,1152,"HK1003 -Blackpoint D2 - Rev.0E DD30092021"
1-4520,SI20PSB6A15,"ERECTION, NDT, PT PIPES / VALVES 20PSB",5121,"HK1003-Rev.0E-3",TT_Task,"55902",-,-,-,0,TK_NotStart,24/06/2022,,29/09/2022,,"SI---5P6A09 FS","SI---5P6A09","SI20PSB6A45 FS","SI20PSB6A45",98,,112,,23,,26,,71,1152,"HK1003 -Blackpoint D2 - Rev.0E DD30092021"
1-4521,SI20PSB6A45,"INSULATION PIPES / VALVES COOLING WATER 20PSB",5121,"HK1003-Rev.0E-3",TT_Task,"55902",-,-,-,0,TK_NotStart,24/10/2022,,27/11/2022,,"SI20PSB6A15 FS,SI-P2I-15 FS","SI20PSB6A15,SI-P2I-15","SI20PSB7A15 FS","SI20PSB7A15",116,,121,,27,,28,,84,1152,"HK1003 -Blackpoint D2 - Rev.0E DD30092021"
1-4522,SI20SCB7A15,"ELECTRICAL ERECTION / VALVES COMPRESSED AIR SYSTEM 20SCB",5121,"HK1003-Rev.0E-3",TT_Task,"55902",-,-,-,0,TK_NotStart,04/11/2022,,10/11/2022,,"SI20SCB6A45 FS,SI20BZP7-181 FS","SI20SCB6A45,SI20BZP7-181","SI20SCA8-16 FS","SI20SCA8-16",117,,118,,27,,27,,84,1632,"HK1003 -Blackpoint D2 - Rev.0E DD30092021"
1-4523,SI20SCB6A15,"ERECTION, NDT, PT PIPES / VALVES 20SCB",5121,"HK1003-Rev.0E-3",TT_Task,"55902",-,-,-,0,TK_NotStart,24/06/2022,,29/09/2022,,"SI---5P6A09 FS","SI---5P6A09","SI20SCB6A45 FS,SI20TPM8A6-20 SS,SI20TPM9A6-20 FF","SI20SCB6A45,SI20TPM8A6-20,SI20TPM9A6-20",98,,112,,23,,26,,71,1632,"HK1003 -Blackpoint D2 - Rev.0E DD30092021"
1-4524,SI20SCB6A45,"INSULATION PIPES / VALVES COMPRESSED AIR SYSTEM 20SCB",5121,"HK1003-Rev.0E-3",TT_Task,"55902",-,-,-,0,TK_NotStart,30/09/2022,,03/11/2022,,"SI20SCB6A15 FS,SI-P2I-15 FS","SI20SCB6A15,SI-P2I-15","SI20SCB7A15 FS","SI20SCB7A15",112,,117,,26,,27,,82,1632,"HK1003 -Blackpoint D2 - Rev.0E DD30092021"
1-4525,SI20QJA7A15,"ELECTRICAL ERECTION / VALVES GAS SUPPLY AND DISTRIBUTION QJA10",5121,"HK1003-Rev.0E-3",TT_Task,"55902",-,-,-,0,TK_NotStart,04/11/2022,,10/11/2022,,"SI20QJA6A45 FS","SI20QJA6A45","SI20QJ-8B12 FS","SI20QJ-8B12",117,,118,,27,,27,,84,984,"HK1003 -Blackpoint D2 - Rev.0E DD30092021"
1-4526,SI20QJA6A15,"ERECTION, NDT, PT PIPES / VALVES 20QJA10",5121,"HK1003-Rev.0E-3",TT_Task,"55902",-,-,-,0,TK_NotStart,24/06/2022,,29/09/2022,,"SI---5P6A09 FS","SI---5P6A09","SI20QJA6A45 FS","SI20QJA6A45",98,,112,,23,,26,,71,984,"HK1003 -Blackpoint D2 - Rev.0E DD30092021"
1-4527,SI20QJA6A45,"INSULATION PIPES / VALVES GAS SUPPLY AND DISTRIBUTION QJA10",5121,"HK1003-Rev.0E-3",TT_Task,"55902",-,-,-,0,TK_NotStart,30/09/2022,,03/11/2022,,"SI20QJA6A15 FS,SI-P2I-15 FS","SI20QJA6A15,SI-P2I-15","SI20QJA7A15 FS","SI20QJA7A15",112,,117,,26,,27,,82,984,"HK1003 -Blackpoint D2 - Rev.0E DD30092021"
1-4528,SI20QJA7A16,"ELECTRICAL ERECTION / VALVES GAS SUPPLY AND DISTRIBUTION QJA20",5121,"HK1003-Rev.0E-3",TT_Task,"55902",-,-,-,0,TK_NotStart,04/11/2022,,10/11/2022,,"SI20QJA6A47 FS","SI20QJA6A47","SI20QJ-8B11 FS","SI20QJ-8B11",117,,118,,27,,27,,84,1336,"HK1003 -Blackpoint D2 - Rev.0E DD30092021"
1-4529,SI20QJA6A46,"ERECTION, NDT, PT PIPES / VALVES 20QJA20",5121,"HK1003-Rev.0E-3",TT_Task,"55902",-,-,-,0,TK_NotStart,24/06/2022,,29/09/2022,,"SI---5P6A09 FS","SI---5P6A09","SI20QJA6A47 FS","SI20QJA6A47",98,,112,,23,,26,,71,1336,"HK1003 -Blackpoint D2 - Rev.0E DD30092021"
1-4530,SI20QJA6A47,"INSULATION PIPES / VALVES GAS SUPPLY AND DISTRIBUTION QJA20",5121,"HK1003-Rev.0E-3",TT_Task,"55902",-,-,-,0,TK_NotStart,30/09/2022,,03/11/2022,,"SI20QJA6A46 FS,SI-P2I-15 FS","SI20QJA6A46,SI-P2I-15","SI20QJA7A16 FS","SI20QJA7A16",112,,117,,26,,27,,82,1336,"HK1003 -Blackpoint D2 - Rev.0E DD30092021"
1-4531,SI20MAM7A15,"ELECTRICAL ERECTION PIPES / VALVES MAM",5121,"HK1003-Rev.0E-3",TT_Task,"55902",-,-,-,0,TK_NotStart,18/12/2022,,31/12/2022,,"SI20MAM6A45 FS","SI20MAM6A45","SI20MA-8-10 FS","SI20MA-8-10",124,,126,,28,,29,,87,832,"HK1003 -Blackpoint D2 - Rev.0E DD30092021"
1-4532,SI20MAM6A45,"INSULATION PIPES / VALVES FOR STEAM SYSTEM MAM",5121,"HK1003-Rev.0E-3",TT_Task,"55902",-,-,-,0,TK_NotStart,13/11/2022,,17/12/2022,,"SI20MAM6A15 FS,SI-P2I-15 FS","SI20MAM6A15,SI-P2I-15","SI20MAM7A15 FS","SI20MAM7A15",119,,124,,27,,28,,85,832,"HK1003 -Blackpoint D2 - Rev.0E DD30092021"
1-4533,SI20MAM6A15,"ERECTION, NDT, PT PIPES / VALVES MAM",5121,"HK1003-Rev.0E-3",TT_Task,"55902",-,-,-,0,TK_NotStart,02/10/2022,,12/11/2022,,"SI20MA-6-65 FS,SI---1P6A05 FS","SI20MA-6-65,SI---1P6A05","SI20MAM6A45 FS","SI20MAM6A45",113,,119,,26,,27,,82,832,"HK1003 -Blackpoint D2 - Rev.0E DD30092021"
1-4534,SI20MAG6A46,"ERECTION, NDT, PT PIPES / VALVES MAG50",5121,"HK1003-Rev.0E-3",TT_Task,"55902",-,-,-,0,TK_NotStart,20/05/2022,,28/07/2022,,"SI20MAG6M10 FS,SI---1P6A05 FS","SI20MAG6M10,SI---1P6A05","SI20MAG6A47 FS","SI20MAG6A47",93,,103,,21,,24,,66,1800,"HK1003 -Blackpoint D2 - Rev.0E DD30092021"
1-4535,SI20MAG7A16,"ELECTRICAL ERECTION / VALVES MAG50",5121,"HK1003-Rev.0E-3",TT_Task,"55902",-,-,-,0,TK_NotStart,01/09/2022,,07/09/2022,,"SI20MAG6A47 FF","SI20MAG6A47","SI20MAG8-10 FS","SI20MAG8-10",108,,109,,25,,25,,80,1752,"HK1003 -Blackpoint D2 - Rev.0E DD30092021"
1-4536,SI20MAG6A47,"INSULATION PIPES / VALVES FOR CONDENSATION SYSTEM MAG50",5121,"HK1003-Rev.0E-3",TT_Task,"55902",-,-,-,0,TK_NotStart,04/08/2022,,07/09/2022,,"SI20MAG6A46 FS,SI-P2I-15 FS","SI20MAG6A46,SI-P2I-15","SI20MAG7A16 FF","SI20MAG7A16",104,,109,,24,,25,,76,1752,"HK1003 -Blackpoint D2 - Rev.0E DD30092021"
1-4537,SI20HSJ7A15,"ELECTRICAL ERECTION / VALVES SCR SYSTEM 20HSJ",5121,"HK1003-Rev.0E-3",TT_Task,"55902",-,-,-,0,TK_NotStart,21/02/2023,,27/02/2023,,"SI20HSJ6A45 FS,SI20BZP7-181 FS","SI20HSJ6A45,SI20BZP7-181","SI20HSJ8-11 FS","SI20HSJ8-11",133,,134,,31,,31,,91,928,"HK1003 -Blackpoint D2 - Rev.0E DD30092021"
1-4538,SI20HSJ6A15,"ERECTION, NDT, PT PIPES / VALVES 20HSJ",5121,"HK1003-Rev.0E-3",TT_Task,"55902",-,-,-,0,TK_NotStart,11/10/2022,,16/01/2023,,"SI20HSJ6-15 FS,SI20TP-136& FS,SI20TP-135& FS,SI20TP-134& FS,SI20TP-133& FS,SI---1P6A05 FS","SI20HSJ6-15,SI20TP-136&,SI20TP-135&,SI20TP-134&,SI20TP-133&,SI---1P6A05","SI20HSJ6A45 FS","SI20HSJ6A45",114,,128,,26,,29,,83,928,"HK1003 -Blackpoint D2 - Rev.0E DD30092021"
1-4539,SI20HSJ6A45,"INSULATION PIPES / VALVES SCR SYSTEM 20HSJ",5121,"HK1003-Rev.0E-3",TT_Task,"55902",-,-,-,0,TK_NotStart,17/01/2023,,20/02/2023,,"SI20HSJ6A15 FS,SI-P2I-15 FS","SI20HSJ6A15,SI-P2I-15","SI20HSJ7A15 FS","SI20HSJ7A15",128,,133,,29,,31,,88,928,"HK1003 -Blackpoint D2 - Rev.0E DD30092021"
1-4540,SI20MKA7A15,"ELECTRICAL ERECTION / VALVES GENERATOR 20MKA",5121,"HK1003-Rev.0E-3",TT_Task,"55902",-,-,-,0,TK_NotStart,28/01/2023,,03/02/2023,,"SI20MKA6A45 FS","SI20MKA6A45","SI20MKA8-10 FS,SI20MKF8-11 FS","SI20MKA8-10,SI20MKF8-11",130,,130,,30,,30,,89,784,"HK1003 -Blackpoint D2 - Rev.0E DD30092021"
1-4541,SI20MKA6A15,"ERECTION, NDT, PT PIPES / VALVES 20MKA",5121,"HK1003-Rev.0E-3",TT_Task,"55902",-,-,-,0,TK_NotStart,10/09/2022,,23/12/2022,,"SI20MKA6-18 FS,SI---5P6A09 FS","SI20MKA6-18,SI---5P6A09","SI20MKA6A45 FS","SI20MKA6A45",110,,124,,25,,29,,80,784,"HK1003 -Blackpoint D2 - Rev.0E DD30092021"
1-4542,SI20MKA6A45,"INSULATION PIPES / VALVES GENERATOR 20MKA",5121,"HK1003-Rev.0E-3",TT_Task,"55902",-,-,-,0,TK_NotStart,24/12/2022,,27/01/2023,,"SI20MKA6A15 FS,SI-P2I-15 FS","SI20MKA6A15,SI-P2I-15","SI20MKA7A15 FS","SI20MKA7A15",125,,129,,29,,30,,87,784,"HK1003 -Blackpoint D2 - Rev.0E DD30092021"
1-4543,SI20UBA5-99,"(RFE) READY FOR E-ERECTION 01UBA9010/20",5121,"HK1003-Rev.0E-3",TT_FinMile,"55902",-,-,-,0,TK_NotStart,08/05/2022,,08/05/2022,,"SI20UBA5C-10 FS","SI20UBA5C-10","SI20BZP7-45 FS","SI20BZP7-45",92,,92,,21,,21,,64,1192,"HK1003 -Blackpoint D2 - Rev.0E DD30092021"
1-4544,SI20UBA5-100,"(RFE) READY FOR E-ERECTION 20UBA8110/20",5121,"HK1003-Rev.0E-3",TT_FinMile,"55902",-,-,-,0,TK_NotStart,16/06/2022,,16/06/2022,,"SI20UBA5-52 FS","SI20UBA5-52","SI20BZP7-85 FS","SI20BZP7-85",97,,97,,22,,22,,70,1256,"HK1003 -Blackpoint D2 - Rev.0E DD30092021"
1-4545,SI20UBA5-102,"(RFE) READY FOR E-ERECTION 20UBA7910/20",5121,"HK1003-Rev.0E-3",TT_FinMile,"55902",-,-,-,0,TK_NotStart,03/06/2022,,03/06/2022,,"SI20UBA5-15 FS","SI20UBA5-15","SI20BZP7-50 FS","SI20BZP7-50",95,,95,,22,,22,,68,968,"HK1003 -Blackpoint D2 - Rev.0E DD30092021"
1-4546,SI20UBA5-101,"(RFE) READY FOR E-ERECTION 20UBA7xxx",5121,"HK1003-Rev.0E-3",TT_FinMile,"55902",-,-,-,0,TK_NotStart,29/04/2022,,29/04/2022,,"SI20UBA5-17 FS","SI20UBA5-17","SI20BZP7-160 FS","SI20BZP7-160",90,,90,,21,,21,,60,616,"HK1003 -Blackpoint D2 - Rev.0E DD30092021"
1-4547,SI20UBA5-103,"(RFE) READY FOR E-ERECTION 20UBA1110/20",5121,"HK1003-Rev.0E-3",TT_FinMile,"55902",-,-,-,0,TK_NotStart,26/01/2022,,26/01/2022,,"SI20UBA5-55 FS","SI20UBA5-55","SI20BZP7-60 FS","SI20BZP7-60",77,,77,,18,,18,,46,2408,"HK1003 -Blackpoint D2 - Rev.0E DD30092021"
1-4548,SI20HB-6-49,"ERECTION STACK HRSG20_2nd part",5121,"HK1003-Rev.0E-3",TT_Task,"55902",-,-,-,0,TK_NotStart,07/07/2022,,13/07/2022,,"SI20HB-6-43 FS","SI20HB-6-43","SI20HB-6-45 FS,SI20BZK7-130 FS,SI20HB-8-12 FS,SI20HB-8-25 FS,SI20BZK7-130 FF,SI20HB-6-42 FS","SI20HB-6-45,SI20BZK7-130,SI20HB-8-12,SI20HB-8-25,SI20BZK7-130,SI20HB-6-42",100,,101,,23,,23,,73,1696,"HK1003 -Blackpoint D2 - Rev.0E DD30092021"
1-4549,SI20HB-6-50,"ERECTION STACK HRSG20_4th part",5121,"HK1003-Rev.0E-3",TT_Task,"55902",-,-,-,0,TK_NotStart,18/08/2022,,24/08/2022,,"SI20HB-6-45 FS,SI20HB-6-52 FS","SI20HB-6-45,SI20HB-6-52","SI20HB-6-46 FS,SI20HB-6-85 FS","SI20HB-6-46,SI20HB-6-85",106,,107,,24,,25,,78,1696,"HK1003 -Blackpoint D2 - Rev.0E DD30092021"
1-4550,SI20TPM1A8-30,"COMMISSIONING OF TP-M1A",5121,"HK1003-Rev.0E-3",TT_Task,"55902",-,-,-,0,TK_NotStart,27/04/2023,,03/05/2023,,"SI20TPM1A6-25 FS,SI20TPM1A8-26 FS,SI--EK-8-08 FS","SI20TPM1A6-25,SI20TPM1A8-26,SI--EK-8-08","SI20MB-9-15 FS,SI20EK-8-99 FS,SI20EK-8-25 FS","SI20MB-9-15,SI20EK-8-99,SI20EK-8-25",142,,143,,33,,33,,96,8,"HK1003 -Blackpoint D2 - Rev.0E DD30092021"
1-4551,SI20TPM1A3-15,"MATERIAL FOR TP INTEGRATION ON SITE TP-M1A",5121,"HK1003-Rev.0E-3",TT_Mile,"55902",-,-,-,0,TK_NotStart,19/07/2022,,19/07/2022,,"SI20TPM1A2-5 FS","SI20TPM1A2-5","SI20TPM1A6-25 FS,SI20TPM1A6-20 FS","SI20TPM1A6-25,SI20TPM1A6-20",102,,102,,23,,23,,74,1448,"HK1003 -Blackpoint D2 - Rev.0E DD30092021"
1-4552,SI20TPM1A6-25,"TERMINATION OF TP-M1A",5121,"HK1003-Rev.0E-3",TT_Task,"55902",-,-,-,0,TK_NotStart,22/10/2022,,28/10/2022,,"SI20TPM1A3-15 FS,SI20TPM1A6-20 FS,SI20TPM1A2-16 FS,SI20TPM1A6-26 SS","SI20TPM1A3-15,SI20TPM1A6-20,SI20TPM1A2-16,SI20TPM1A6-26","SI20TPM1A8-30 FS,SI20TPM1A8-26 FS","SI20TPM1A8-30,SI20TPM1A8-26",116,,116,,27,,27,,84,1448,"HK1003 -Blackpoint D2 - Rev.0E DD30092021"
1-4553,SI20TPM1A2-5,"TECHNICAL CLARIFICATION WITH CUSTOMER / DESIGN FOR CONNECTION OF TP-M1A",5121,"HK1003-Rev.0E-3",TT_Task,"55902",-,-,-,100,TK_Complete,11/04/2021,11/04/2021,08/05/2021,08/05/2021,"SI-----1-05 FS,SI--M--2D21 FS","SI-----1-05,SI--M--2D21","SI20TPM1A2-10 FS,SI20TPM1A3-15 FS,SI---2P2A10 FS","SI20TPM1A2-10,SI20TPM1A3-15,SI---2P2A10",36,36,40,40,8,8,9,9,8,,"HK1003 -Blackpoint D2 - Rev.0E DD30092021"
1-4554,SI20TPM1A2-10,"FINAL AGREEMENT WITH CUSTOMER / ACCESS TIME / REQUIREMENTS TO TP ALIGNED TP-M1A",5121,"HK1003-Rev.0E-3",TT_Mile,"55902",-,-,-,0,TK_NotStart,26/04/2022,,26/04/2022,,"SI20TPM1A2-5 FS","SI20TPM1A2-5","SI20TPM1A6-20 FS,SI20TPM1A2-11 FS","SI20TPM1A6-20,SI20TPM1A2-11",90,,90,,21,,21,,59,1448,"HK1003 -Blackpoint D2 - Rev.0E DD30092021"
1-4555,SI20TPM1A6-20,"INSTALLATION OF CONNECTION MATERIAL IN CUSTOMER SITE TP-M1A",5121,"HK1003-Rev.0E-3",TT_Task,"55902",-,-,-,0,TK_NotStart,19/07/2022,,19/10/2022,,"SI20TPM1A2-10 FS,SI20TPM1A3-15 FS,SI20TPM1A2-11 FS,SI20EKG6H16 SS,SI20TP-100& FS,SI20UEZ6B-10 SS","SI20TPM1A2-10,SI20TPM1A3-15,SI20TPM1A2-11,SI20EKG6H16,SI20TP-100&,SI20UEZ6B-10","SI20TPM1A6-25 FS,SI20TPM1A2-16 FS,SI20TPM1A6-26 FS","SI20TPM1A6-25,SI20TPM1A2-16,SI20TPM1A6-26",102,,115,,23,,26,,74,1448,"HK1003 -Blackpoint D2 - Rev.0E DD30092021"
1-4556,SI20TPM1A2-11,"UPDATE OF TRANSITION PLAN TP-M1A",5121,"HK1003-Rev.0E-3",TT_Task,"55902",-,-,-,0,TK_NotStart,26/04/2022,,02/05/2022,,"SI20TPM1A2-10 FS","SI20TPM1A2-10","SI20TPM1A6-20 FS","SI20TPM1A6-20",90,,91,,21,,21,,59,1448,"HK1003 -Blackpoint D2 - Rev.0E DD30092021"
1-4557,SI20TPM1A2-16,"ALL RELEVANT PERMITS & LOTO AVAILABLE FROM CUSTOMER TP-M1A",5121,"HK1003-Rev.0E-3",TT_Mile,"55902",-,-,-,0,TK_NotStart,21/10/2022,,21/10/2022,,"SI20TPM1A6-20 FS,SI20TPM1A6-26 SS","SI20TPM1A6-20,SI20TPM1A6-26","SI20TPM1A6-25 FS","SI20TPM1A6-25",115,,115,,27,,27,,83,1448,"HK1003 -Blackpoint D2 - Rev.0E DD30092021"
1-4558,SI20TPM1A8-26,"MEDIA  AVAILABLE TP-M1A",5121,"HK1003-Rev.0E-3",TT_Mile,"55902",-,-,-,0,TK_NotStart,27/04/2023,,27/04/2023,,"SI20TPM1A6-25 FS,SI--EK-8-08 FS","SI20TPM1A6-25,SI--EK-8-08","SI20TPM1A8-30 FS","SI20TPM1A8-30",142,,142,,33,,33,,96,8,"HK1003 -Blackpoint D2 - Rev.0E DD30092021"
1-4559,SI20UBA4G61,"(ET4a) LATEST DELIVERY DATE I&C CUBICLES (GT PACKAGE) FOR ASSEMBLY 20UBA7310/30",5121,"HK1003-Rev.0E-3",TT_Mile,"55902",-,-,-,0,TK_NotStart,18/11/2021,,18/11/2021,,"SI20CJ-4-11 FS","SI20CJ-4-11","SI20UBA4G60 FS","SI20UBA4G60",67,,67,,15,,15,,39,1152,"HK1003 -Blackpoint D2 - Rev.0E DD30092021"
1-4560,SI20UBA4-70,"(ET4b) ELECTRICAL MODULES AT WORKSHOP READY FOR COMPONENT INSTALLATION ELECTRICAL MODULES 20UBA8010/20",5121,"HK1003-Rev.0E-3",TT_Mile,"55902",-,-,-,0,TK_NotStart,17/06/2022,,17/06/2022,,"SP--B--2-13 FS,SI20BFC4-10 FS","SP--B--2-13,SI20BFC4-10","SI20UBA3K55 FS","SI20UBA3K55",97,,97,,22,,22,,70,80,"HK1003 -Blackpoint D2 - Rev.0E DD30092021"
1-4561,SI20URA3-26,"CLIENT - REVIEW - STEEL STRUCTURE 20URA",5121,"HK1003-Rev.0E-3",TT_Task,"55902",-,-,-,100,TK_Complete,04/09/2021,04/09/2021,28/09/2021,28/09/2021,"SI20URA3-17 FS","SI20URA3-17","SI20URA3-19 FS","SI20URA3-19",57,57,60,60,13,13,14,14,28,,"HK1003 -Blackpoint D2 - Rev.0E DD30092021"
1-4562,SP20MBL2-101,"DETAIL DESIGN AIR INTAKE SYSTEM 20MBL",5121,"HK1003-Rev.0E-3",TT_Task,"55902",-,-,-,100,TK_Complete,14/05/2021,14/05/2021,28/07/2021,28/07/2021,"SP20MBL2-85 FS,SP20MBL2-102 FS","SP20MBL2-85,SP20MBL2-102","SP20MBL2-96 FS","SP20MBL2-96",40,40,51,51,9,9,12,12,12,,"HK1003 -Blackpoint D2 - Rev.0E DD30092021"
1-4563,SP20MBR3A82,"(RFS) READY FOR SHIPMENT EXPANSION JOINT 20MBR",5121,"HK1003-Rev.0E-3",TT_FinMile,"55902",-,-,-,0,TK_NotStart,22/03/2022,,22/03/2022,,"SP20MBR4-11 FS","SP20MBR4-11","SI20MBR4-41 FS","SI20MBR4-41",85,,85,,19,,19,,53,1096,"HK1003 -Blackpoint D2 - Rev.0E DD30092021"
1-4564,SI20MBR4-41,"TRANSPORT EXPANSION JOINT 20MBR",5121,"HK1003-Rev.0E-3",TT_Task,"55902",-,-,-,0,TK_NotStart,23/03/2022,,17/05/2022,,"SP20MBR3A82 FS","SP20MBR3A82","SI20MBR4-42 FS","SI20MBR4-42",85,,93,,19,,21,,53,1096,"HK1003 -Blackpoint D2 - Rev.0E DD30092021"
1-4565,SP20MBR4-11,"LOGISTICS AND CUSTOMS PREPARATION DIFFUSER 20MBR",5121,"HK1003-Rev.0E-3",TT_Task,"55902",-,-,-,0,TK_NotStart,23/02/2022,,22/03/2022,,"SP20MBR3-71 FS","SP20MBR3-71","SP20MBR3A82 FS","SP20MBR3A82",81,,85,,19,,19,,50,1096,"HK1003 -Blackpoint D2 - Rev.0E DD30092021"
1-4566,SP20MBR3-71,"TIMES OF COMPLETION (FINAL DATA IN KANLOG) EXPANSION JOINT 20MBR",5121,"HK1003-Rev.0E-3",TT_Mile,"55902",-,-,-,0,TK_NotStart,23/02/2022,,23/02/2022,,"SP20MBR3A25 FS","SP20MBR3A25","SP20MBR4-11 FS","SP20MBR4-11",81,,81,,19,,19,,50,1096,"HK1003 -Blackpoint D2 - Rev.0E DD30092021"
1-4567,SI20MBR4-42,"(OTD-OS) ON SITE EXPANSION JOINT 20MBR",5121,"HK1003-Rev.0E-3",TT_FinMile,"55902",-,-,-,0,TK_NotStart,17/05/2022,,17/05/2022,,"SI20MBR4-41 FS","SI20MBR4-41","SI20MBR6-35 FS","SI20MBR6-35",93,,93,,21,,21,,65,1096,"HK1003 -Blackpoint D2 - Rev.0E DD30092021"
1-4568,SI--CYA2-95,"BASIC DESIGN INPUT HANDOVER SIEMENS TO ATKINS - LIGHTING & SMALL POWER SYSTEM",5121,"HK1003-Rev.0E-3",TT_Mile,"55902",-,-,-,100,TK_Complete,09/04/2021,09/04/2021,09/04/2021,09/04/2021,"SI--BZL2-15 SS","SI--BZL2-15","SI--CYA2-87 FS","SI--CYA2-87",35,35,35,35,8,8,8,8,8,,"HK1003 -Blackpoint D2 - Rev.0E DD30092021"
1-4569,SI20MAJ6A16,"INSULATION PIPES / VALVES FOR STEAM SYSTEM MAJ",5121,"HK1003-Rev.0E-3",TT_Task,"55902",-,-,-,0,TK_NotStart,21/08/2022,,24/09/2022,,"SI20MAJ6A15 FS","SI20MAJ6A15","SI20MAJ7A15 FS","SI20MAJ7A15",107,,112,,25,,26,,78,1504,"HK1003 -Blackpoint D2 - Rev.0E DD30092021"
1-4570,SI20TPM1B8-30,"COMMISSIONING OF TP-M1B",5121,"HK1003-Rev.0E-3",TT_Task,"55902",-,-,-,0,TK_NotStart,27/04/2023,,03/05/2023,,"SI20TPM1B6-25 FS,SI20TPM1B8-26 FS","SI20TPM1B6-25,SI20TPM1B8-26","SI20MB-9-15 FS,SI20EK-8-25 FS,SI20EK-8-99 FS","SI20MB-9-15,SI20EK-8-25,SI20EK-8-99",142,,143,,33,,33,,96,8,"HK1003 -Blackpoint D2 - Rev.0E DD30092021"
1-4571,SI20TPM1B3-15,"MATERIAL FOR TP INTEGRATION ON SITE TP-M1B",5121,"HK1003-Rev.0E-3",TT_Mile,"55902",-,-,-,0,TK_NotStart,19/07/2022,,19/07/2022,,"SI20TPM1B2-5 FS,SI20TPM1B2-10 FS","SI20TPM1B2-5,SI20TPM1B2-10","SI20TPM1B6-25 FS,SI20TPM1B6-20 FS","SI20TPM1B6-25,SI20TPM1B6-20",102,,102,,23,,23,,74,1432,"HK1003 -Blackpoint D2 - Rev.0E DD30092021"
1-4572,SI20TPM1B6-25,"TERMINATION OF TP-M1B",5121,"HK1003-Rev.0E-3",TT_Task,"55902",-,-,-,0,TK_NotStart,17/10/2022,,30/10/2022,,"SI20TPM1B3-15 FS,SI20TPM1B6-20 FS,SI20TPM1B2-16 FS","SI20TPM1B3-15,SI20TPM1B6-20,SI20TPM1B2-16","SI20TPM1B8-30 FS,SI20TPM1B8-26 FS","SI20TPM1B8-30,SI20TPM1B8-26",115,,117,,26,,27,,83,1432,"HK1003 -Blackpoint D2 - Rev.0E DD30092021"
1-4573,SI20TPM1B2-5,"TECHNICAL CLARIFICATION WITH CUSTOMER / DESIGN FOR CONNECTION OF TP-M1B",5121,"HK1003-Rev.0E-3",TT_Task,"55902",-,-,-,100,TK_Complete,11/04/2021,11/04/2021,08/05/2021,08/05/2021,"SI-----1-05 FS,SI--M--2D21 FS","SI-----1-05,SI--M--2D21","SI20TPM1B2-10 FS,SI20TPM1B3-15 FS,SI---2P2A10 FS","SI20TPM1B2-10,SI20TPM1B3-15,SI---2P2A10",36,36,40,40,8,8,9,9,8,,"HK1003 -Blackpoint D2 - Rev.0E DD30092021"
1-4574,SI20TPM1B2-10,"FINAL AGREEMENT WITH CUSTOMER / ACCESS TIME / REQUIREMENTS TO TP ALIGNED TP-M1B",5121,"HK1003-Rev.0E-3",TT_Mile,"55902",-,-,-,0,TK_NotStart,26/04/2022,,26/04/2022,,"SI20TPM1B2-5 FS","SI20TPM1B2-5","SI20TPM1B6-20 FS,SI20TPM1B2-11 FS,SI20TPM1B3-15 FS","SI20TPM1B6-20,SI20TPM1B2-11,SI20TPM1B3-15",90,,90,,21,,21,,59,1432,"HK1003 -Blackpoint D2 - Rev.0E DD30092021"
1-4575,SI20TPM1B6-20,"INSTALLATION OF CONNECTION MATERIAL IN CUSTOMER SITE TP-M1B",5121,"HK1003-Rev.0E-3",TT_Task,"55902",-,-,-,0,TK_NotStart,19/07/2022,,16/10/2022,,"SI20TPM1B2-10 FS,SI20TPM1B3-15 FS,SI20TPM1B2-11 FS,SI20EKG6H16 SS,SI20TP-101& FS,SI20UEZ6B-10 SS","SI20TPM1B2-10,SI20TPM1B3-15,SI20TPM1B2-11,SI20EKG6H16,SI20TP-101&,SI20UEZ6B-10","SI20TPM1B6-25 FS,SI20TPM1B2-16 FS","SI20TPM1B6-25,SI20TPM1B2-16",102,,115,,23,,26,,74,1432,"HK1003 -Blackpoint D2 - Rev.0E DD30092021"
1-4576,SI20TPM1B2-11,"UPDATE OF TRANSITION PLAN TP-M1B",5121,"HK1003-Rev.0E-3",TT_Task,"55902",-,-,-,0,TK_NotStart,26/04/2022,,02/05/2022,,"SI20TPM1B2-10 FS","SI20TPM1B2-10","SI20TPM1B6-20 FS","SI20TPM1B6-20",90,,91,,21,,21,,59,1432,"HK1003 -Blackpoint D2 - Rev.0E DD30092021"
1-4577,SI20TPM1B2-16,"ALL RELEVANT PERMITS & LOTO AVAILABLE FROM CUSTOMER TP-M1B",5121,"HK1003-Rev.0E-3",TT_Mile,"55902",-,-,-,0,TK_NotStart,17/10/2022,,17/10/2022,,"SI20TPM1B6-20 FS","SI20TPM1B6-20","SI20TPM1B6-25 FS","SI20TPM1B6-25",115,,115,,26,,26,,83,1432,"HK1003 -Blackpoint D2 - Rev.0E DD30092021"
1-4578,SI20TPM1B8-26,"MEDIA  AVAILABLE TP-M1B",5121,"HK1003-Rev.0E-3",TT_Mile,"55902",-,-,-,0,TK_NotStart,27/04/2023,,27/04/2023,,"SI20TPM1B6-25 FS,SI--EK-8-08 FS","SI20TPM1B6-25,SI--EK-8-08","SI20TPM1B8-30 FS","SI20TPM1B8-30",142,,142,,33,,33,,96,8,"HK1003 -Blackpoint D2 - Rev.0E DD30092021"
1-4579,SI20UBY4-56,"(RFE) FOUNDATION 20UBY04",5121,"HK1003-Rev.0E-3",TT_FinMile,"55902",-,-,-,0,TK_NotStart,30/06/2022,,30/06/2022,,"SI20UBY4-54 FS,SI20UBY4-57 FS","SI20UBY4-54,SI20UBY4-57","SI20BZP7-5 FS,SI20UVM6B5 FS","SI20BZP7-5,SI20UVM6B5",99,,99,,23,,23,,72,336,"HK1003 -Blackpoint D2 - Rev.0E DD30092021"
1-4580,SI20UBY4-54,"CONSTRUCTION FOUNDATION 20UBY04 PART 1",5121,"HK1003-Rev.0E-3",TT_Task,"55902",-,-,-,0,TK_NotStart,12/04/2022,,25/04/2022,,"SI20UBY4-55 SS","SI20UBY4-55","SI20UBY4-56 FS,SI20UBY4-57 FS","SI20UBY4-56,SI20UBY4-57",88,,90,,20,,21,,57,336,"HK1003 -Blackpoint D2 - Rev.0E DD30092021"
1-4581,SI20UBY4-53,"WORK PREPARATION, EXCAVATION 20UBY04",5121,"HK1003-Rev.0E-3",TT_Task,"55902",-,-,-,0,TK_NotStart,29/03/2022,,11/04/2022,,"SI20UBY2-64 FS,SI20UBY5-53 SS,SI-P222-84 FS,SI20UBY2-74 FS","SI20UBY2-64,SI20UBY5-53,SI-P222-84,SI20UBY2-74","SI20UBY4-55 FS,SI20TPC2A6-20 SS","SI20UBY4-55,SI20TPC2A6-20",86,,88,,20,,20,,54,336,"HK1003 -Blackpoint D2 - Rev.0E DD30092021"
1-4582,SI20UBY4-55,"(H) START PLACING FORMWORK 20UBY04",5121,"HK1003-Rev.0E-3",TT_Mile,"55902",-,-,-,0,TK_NotStart,12/04/2022,,12/04/2022,,"SI20UBY4-53 FS,SI20UBY2-75 FS","SI20UBY4-53,SI20UBY2-75","SI20UBY4-54 SS","SI20UBY4-54",88,,88,,20,,20,,57,336,"HK1003 -Blackpoint D2 - Rev.0E DD30092021"
1-4583,SI20UBY4-57,"CONSTRUCTION FOUNDATION 20UBY04 PART 2",5121,"HK1003-Rev.0E-3",TT_Task,"55902",-,-,-,0,TK_NotStart,26/04/2022,,23/05/2022,,"SI20UBY4-54 FS","SI20UBY4-54","SI20UBY4-56 FS","SI20UBY4-56",90,,94,,21,,22,,59,336,"HK1003 -Blackpoint D2 - Rev.0E DD30092021"
1-4584,SI20TPM2C8-30,"COMMISSIONING OF TP-M2C",5121,"HK1003-Rev.0E-3",TT_Task,"55902",-,-,-,0,TK_NotStart,20/05/2023,,26/05/2023,,"SI20TPM2C6-25 FS,SI20TPM2C8-26 FS","SI20TPM2C6-25,SI20TPM2C8-26","SI20XKA8-25 FS","SI20XKA8-25",146,,146,,34,,34,,97,168,"HK1003 -Blackpoint D2 - Rev.0E DD30092021"
1-4585,SI20TPM2C3-15,"MATERIAL FOR TP INTEGRATION ON SITE TP-M2C",5121,"HK1003-Rev.0E-3",TT_Mile,"55902",-,-,-,0,TK_NotStart,17/09/2022,,17/09/2022,,"SI20TPM2C2-5 FS,SI20TPM2C2-10 FS","SI20TPM2C2-5,SI20TPM2C2-10","SI20TPM2C6-25 FS,SI20TPM2C6-20 FS","SI20TPM2C6-25,SI20TPM2C6-20",111,,111,,25,,25,,81,1736,"HK1003 -Blackpoint D2 - Rev.0E DD30092021"
1-4586,SI20TPM2C6-25,"TERMINATION OF TP-M2C",5121,"HK1003-Rev.0E-3",TT_Task,"55902",-,-,-,0,TK_NotStart,22/10/2022,,04/11/2022,,"SI20TPM2C3-15 FS,SI20TPM2C6-20 FS,SI20TPM2C2-16 FS","SI20TPM2C3-15,SI20TPM2C6-20,SI20TPM2C2-16","SI20TPM2C8-30 FS,SI20TPM2C8-26 FS","SI20TPM2C8-30,SI20TPM2C8-26",116,,117,,27,,27,,84,1736,"HK1003 -Blackpoint D2 - Rev.0E DD30092021"
1-4587,SI20TPM2C2-5,"TECHNICAL CLARIFICATION WITH CUSTOMER / DESIGN FOR CONNECTION OF TP-M2C",5121,"HK1003-Rev.0E-3",TT_Task,"55902",-,-,-,100,TK_Complete,11/04/2021,11/04/2021,08/05/2021,08/05/2021,"SI-----1-05 FS,SI--M--2D21 FS","SI-----1-05,SI--M--2D21","SI20TPM2C2-10 FS,SI20TPM2C3-15 FS,SI---2P2A10 FS","SI20TPM2C2-10,SI20TPM2C3-15,SI---2P2A10",36,36,40,40,8,8,9,9,8,,"HK1003 -Blackpoint D2 - Rev.0E DD30092021"
1-4588,SI20TPM2C2-10,"FINAL AGREEMENT WITH CUSTOMER / ACCESS TIME / REQUIREMENTS TO TP ALIGNED TP-M2C",5121,"HK1003-Rev.0E-3",TT_Mile,"55902",-,-,-,0,TK_NotStart,25/06/2022,,25/06/2022,,"SI20TPM2C2-5 FS","SI20TPM2C2-5","SI20TPM2C6-20 FS,SI20TPM2C2-11 FS,SI20TPM2C3-15 FS","SI20TPM2C6-20,SI20TPM2C2-11,SI20TPM2C3-15",99,,99,,23,,23,,71,1736,"HK1003 -Blackpoint D2 - Rev.0E DD30092021"
1-4589,SI20TPM2C6-20,"INSTALLATION OF CONNECTION MATERIAL IN CUSTOMER SITE TP-M2C",5121,"HK1003-Rev.0E-3",TT_Task,"55902",-,-,-,0,TK_NotStart,17/09/2022,,21/10/2022,,"SI20TPM2C2-10 FS,SI20TPM2C3-15 FS,SI20TPM2C2-11 FS,SI20EGx6-65 SS,SI20TP-105& FS,SI20UEZ6B-10 SS","SI20TPM2C2-10,SI20TPM2C3-15,SI20TPM2C2-11,SI20EGx6-65,SI20TP-105&,SI20UEZ6B-10","SI20TPM2C6-25 FS,SI20TPM2C2-16 FS","SI20TPM2C6-25,SI20TPM2C2-16",111,,115,,25,,27,,81,1736,"HK1003 -Blackpoint D2 - Rev.0E DD30092021"
1-4590,SI20TPM2C2-11,"UPDATE OF TRANSITION PLAN TP-M2C",5121,"HK1003-Rev.0E-3",TT_Task,"55902",-,-,-,0,TK_NotStart,25/06/2022,,01/07/2022,,"SI20TPM2C2-10 FS","SI20TPM2C2-10","SI20TPM2C6-20 FS","SI20TPM2C6-20",99,,99,,23,,23,,71,1736,"HK1003 -Blackpoint D2 - Rev.0E DD30092021"
1-4591,SI20TPM2C2-16,"ALL RELEVANT PERMITS & LOTO AVAILABLE FROM CUSTOMER TP-M2C",5121,"HK1003-Rev.0E-3",TT_Mile,"55902",-,-,-,0,TK_NotStart,22/10/2022,,22/10/2022,,"SI20TPM2C6-20 FS","SI20TPM2C6-20","SI20TPM2C6-25 FS","SI20TPM2C6-25",116,,116,,27,,27,,84,1736,"HK1003 -Blackpoint D2 - Rev.0E DD30092021"
1-4592,SI20TPM2C8-26,"MEDIA  AVAILABLE TP-M2C",5121,"HK1003-Rev.0E-3",TT_Mile,"55902",-,-,-,0,TK_NotStart,20/05/2023,,20/05/2023,,"SI20TPM2C6-25 FS","SI20TPM2C6-25","SI20TPM2C8-30 FS","SI20TPM2C8-30",146,,146,,34,,34,,97,168,"HK1003 -Blackpoint D2 - Rev.0E DD30092021"
1-4593,SI20TPM4A8-30,"COMMISSIONING OF TP-M4A",5121,"HK1003-Rev.0E-3",TT_Task,"55902",-,-,-,0,TK_NotStart,01/06/2022,,07/06/2022,,"SI20TPM4A6-25 FS,SI20TPM4A8-26 FS","SI20TPM4A6-25,SI20TPM4A8-26","SI20LAC8B25 FS","SI20LAC8B25",95,,96,,22,,22,,67,2600,"HK1003 -Blackpoint D2 - Rev.0E DD30092021"
1-4594,SI20TPM4A3-15,"MATERIAL FOR TP INTEGRATION ON SITE TP-M4A",5121,"HK1003-Rev.0E-3",TT_Mile,"55902",-,-,-,0,TK_NotStart,18/05/2022,,18/05/2022,,"SI20TPM4A2-5 FS,SI20TPM4A2-10 FS","SI20TPM4A2-5,SI20TPM4A2-10","SI20TPM4A6-25 FS,SI20TPM4A6-20 FS","SI20TPM4A6-25,SI20TPM4A6-20",93,,93,,21,,21,,65,2600,"HK1003 -Blackpoint D2 - Rev.0E DD30092021"
1-4595,SI20TPM4A6-25,"TERMINATION OF TP-M4A",5121,"HK1003-Rev.0E-3",TT_Task,"55902",-,-,-,0,TK_NotStart,25/05/2022,,31/05/2022,,"SI20TPM4A3-15 FS,SI20TPM4A6-20 SS,SI20TPM4A2-16 FS","SI20TPM4A3-15,SI20TPM4A6-20,SI20TPM4A2-16","SI20TPM4A8-30 FS,SI20TPM4A8-26 FS","SI20TPM4A8-30,SI20TPM4A8-26",94,,95,,22,,22,,66,2600,"HK1003 -Blackpoint D2 - Rev.0E DD30092021"
1-4596,SI20TPM4A2-5,"TECHNICAL CLARIFICATION WITH CUSTOMER / DESIGN FOR CONNECTION OF TP-M4A",5121,"HK1003-Rev.0E-3",TT_Task,"55902",-,-,-,100,TK_Complete,11/04/2021,11/04/2021,08/05/2021,08/05/2021,"SI-----1-05 FS,SI--M--2D21 FS","SI-----1-05,SI--M--2D21","SI20TPM4A2-10 FS,SI20TPM4A3-15 FS,SI---2P2A10 FS","SI20TPM4A2-10,SI20TPM4A3-15,SI---2P2A10",36,36,40,40,8,8,9,9,8,,"HK1003 -Blackpoint D2 - Rev.0E DD30092021"
1-4597,SI20TPM4A2-10,"FINAL AGREEMENT WITH CUSTOMER / ACCESS TIME / REQUIREMENTS TO TP ALIGNED TP-M4A",5121,"HK1003-Rev.0E-3",TT_Mile,"55902",-,-,-,0,TK_NotStart,10/11/2021,,10/11/2021,,"SI20TPM4A2-5 FS","SI20TPM4A2-5","SI20TPM4A6-20 FS,SI20TPM4A2-11 FS,SI20TPM4A3-15 FS","SI20TPM4A6-20,SI20TPM4A2-11,SI20TPM4A3-15",66,,66,,15,,15,,37,4056,"HK1003 -Blackpoint D2 - Rev.0E DD30092021"
1-4598,SI20TPM4A6-20,"INSTALLATION OF CONNECTION MATERIAL IN CUSTOMER SITE TP-M4A",5121,"HK1003-Rev.0E-3",TT_Task,"55902",-,-,-,0,TK_NotStart,18/05/2022,,31/05/2022,,"SI20TPM4A2-10 FS,SI20TPM4A3-15 FS,SI20TPM4A2-11 FS,SI20TP-115& FS,SI20UEZ6B-10 SS","SI20TPM4A2-10,SI20TPM4A3-15,SI20TPM4A2-11,SI20TP-115&,SI20UEZ6B-10","SI20TPM4A6-25 SS,SI20TPM4A2-16 SS","SI20TPM4A6-25,SI20TPM4A2-16",93,,95,,21,,22,,65,2600,"HK1003 -Blackpoint D2 - Rev.0E DD30092021"
1-4599,SI20TPM4A2-11,"UPDATE OF TRANSITION PLAN TP-M4A",5121,"HK1003-Rev.0E-3",TT_Task,"55902",-,-,-,0,TK_NotStart,10/11/2021,,16/11/2021,,"SI20TPM4A2-10 FS","SI20TPM4A2-10","SI20TPM4A6-20 FS","SI20TPM4A6-20",66,,67,,15,,15,,37,4056,"HK1003 -Blackpoint D2 - Rev.0E DD30092021"
1-4600,SI20TPM4A2-16,"ALL RELEVANT PERMITS & LOTO AVAILABLE FROM CUSTOMER TP-M4A",5121,"HK1003-Rev.0E-3",TT_Mile,"55902",-,-,-,0,TK_NotStart,18/05/2022,,18/05/2022,,"SI20TPM4A6-20 SS","SI20TPM4A6-20","SI20TPM4A6-25 FS","SI20TPM4A6-25",93,,93,,21,,21,,65,2656,"HK1003 -Blackpoint D2 - Rev.0E DD30092021"
1-4601,SI20TPM4A8-26,"MEDIA  AVAILABLE TP-M4A",5121,"HK1003-Rev.0E-3",TT_Mile,"55902",-,-,-,0,TK_NotStart,01/06/2022,,01/06/2022,,"SI20TPM4A6-25 FS","SI20TPM4A6-25","SI20TPM4A8-30 FS","SI20TPM4A8-30",95,,95,,22,,22,,67,2600,"HK1003 -Blackpoint D2 - Rev.0E DD30092021"
1-4602,SI20TPM5A8-30,"COMMISSIONING OF TP-M5A",5121,"HK1003-Rev.0E-3",TT_Task,"55902",-,-,-,0,TK_NotStart,25/07/2023,,31/07/2023,,"SI20TPM5A6-25 FS,SI20TPM5A8-26 FS,SI20GKB8A10 FS","SI20TPM5A6-25,SI20TPM5A8-26,SI20GKB8A10","SI20M--9-70 FS","SI20M--9-70",155,,156,,36,,36,,99,0,"HK1003 -Blackpoint D2 - Rev.0E DD30092021"
1-4603,SI20TPM5A3-15,"MATERIAL FOR TP INTEGRATION ON SITE TP-M5A",5121,"HK1003-Rev.0E-3",TT_Mile,"55902",-,-,-,0,TK_NotStart,26/11/2022,,26/11/2022,,"SI20TPM5A2-5 FS,SI20TPM5A2-10 FS","SI20TPM5A2-5,SI20TPM5A2-10","SI20TPM5A6-25 FS,SI20TPM5A6-20 FS","SI20TPM5A6-25,SI20TPM5A6-20",121,,121,,28,,28,,86,1312,"HK1003 -Blackpoint D2 - Rev.0E DD30092021"
1-4604,SI20TPM5A6-25,"TERMINATION OF TP-M5A",5121,"HK1003-Rev.0E-3",TT_Task,"55902",-,-,-,0,TK_NotStart,28/01/2023,,10/02/2023,,"SI20TPM5A3-15 FS,SI20TPM5A6-20 FS,SI20TPM5A2-16 FS","SI20TPM5A3-15,SI20TPM5A6-20,SI20TPM5A2-16","SI20TPM5A8-30 FS,SI20TPM5A8-26 FS","SI20TPM5A8-30,SI20TPM5A8-26",130,,131,,30,,30,,89,1312,"HK1003 -Blackpoint D2 - Rev.0E DD30092021"
1-4605,SI20TPM5A2-5,"TECHNICAL CLARIFICATION WITH CUSTOMER / DESIGN FOR CONNECTION OF TP-M5A",5121,"HK1003-Rev.0E-3",TT_Task,"55902",-,-,-,100,TK_Complete,11/04/2021,11/04/2021,08/05/2021,08/05/2021,"SI-----1-05 FS,SI--M--2D21 FS","SI-----1-05,SI--M--2D21","SI20TPM5A2-10 FS,SI20TPM5A3-15 FS,SI---2P2A10 FS,SI-P222-169 FS","SI20TPM5A2-10,SI20TPM5A3-15,SI---2P2A10,SI-P222-169",36,36,40,40,8,8,9,9,8,,"HK1003 -Blackpoint D2 - Rev.0E DD30092021"
1-4606,SI20TPM5A2-10,"FINAL AGREEMENT WITH CUSTOMER / ACCESS TIME / REQUIREMENTS TO TP ALIGNED TP-M5A",5121,"HK1003-Rev.0E-3",TT_Mile,"55902",-,-,-,0,TK_NotStart,01/09/2022,,01/09/2022,,"SI20TPM5A2-5 FS","SI20TPM5A2-5","SI20TPM5A6-20 FS,SI20TPM5A2-11 FS,SI20TPM5A3-15 FS","SI20TPM5A6-20,SI20TPM5A2-11,SI20TPM5A3-15",108,,108,,25,,25,,80,1944,"HK1003 -Blackpoint D2 - Rev.0E DD30092021"
1-4607,SI20TPM5A6-20,"INSTALLATION OF CONNECTION MATERIAL IN CUSTOMER SITE TP-M5A",5121,"HK1003-Rev.0E-3",TT_Task,"55902",-,-,-,0,TK_NotStart,26/11/2022,,27/01/2023,,"SI20TPM5A2-10 FS,SI20TPM5A3-15 FS,SI20TPM5A2-11 FS,SI20GKB6H16 SS,SI20TP-116& FS,SI20UEZ6B-10 SS,SI-P222-104 FS,SI-P222-106 FS,SI-P222-107 SS","SI20TPM5A2-10,SI20TPM5A3-15,SI20TPM5A2-11,SI20GKB6H16,SI20TP-116&,SI20UEZ6B-10,SI-P222-104,SI-P222-106,SI-P222-107","SI20TPM5A6-25 FS,SI20TPM5A2-16 FS","SI20TPM5A6-25,SI20TPM5A2-16",121,,129,,28,,30,,86,1312,"HK1003 -Blackpoint D2 - Rev.0E DD30092021"
1-4608,SI20TPM5A2-11,"UPDATE OF TRANSITION PLAN TP-M5A",5121,"HK1003-Rev.0E-3",TT_Task,"55902",-,-,-,0,TK_NotStart,01/09/2022,,07/09/2022,,"SI20TPM5A2-10 FS","SI20TPM5A2-10","SI20TPM5A6-20 FS","SI20TPM5A6-20",108,,109,,25,,25,,80,1944,"HK1003 -Blackpoint D2 - Rev.0E DD30092021"
1-4609,SI20TPM5A2-16,"ALL RELEVANT PERMITS & LOTO AVAILABLE FROM CUSTOMER TP-M5A",5121,"HK1003-Rev.0E-3",TT_Mile,"55902",-,-,-,0,TK_NotStart,28/01/2023,,28/01/2023,,"SI20TPM5A6-20 FS","SI20TPM5A6-20","SI20TPM5A6-25 FS","SI20TPM5A6-25",130,,130,,30,,30,,89,1312,"HK1003 -Blackpoint D2 - Rev.0E DD30092021"
1-4610,SI20TPM5A8-26,"MEDIA  AVAILABLE TP-M5A",5121,"HK1003-Rev.0E-3",TT_Mile,"55902",-,-,-,0,TK_NotStart,25/07/2023,,25/07/2023,,"SI20TPM5A6-25 FS","SI20TPM5A6-25","SI20TPM5A8-30 FS","SI20TPM5A8-30",155,,155,,36,,36,,99,0,"HK1003 -Blackpoint D2 - Rev.0E DD30092021"
1-4611,SI20BAA7-67,"PLACEMENT BAA BELOW AIR FILTER HOUSE OUTER PART 20BAA",5121,"HK1003-Rev.0E-3",TT_Task,"55902",-,-,-,0,TK_NotStart,23/08/2022,,29/08/2022,,"SI20BAA4-43 FS","SI20BAA4-43","SI20BAA7-15 FS,SI20MBL6-15 FS","SI20BAA7-15,SI20MBL6-15",107,,108,,25,,25,,78,168,"HK1003 -Blackpoint D2 - Rev.0E DD30092021"
1-4612,SI20BAA4-42,"TRANSPORT IPB IPB FIRST PARTS / SADDLES 20BAA",5121,"HK1003-Rev.0E-3",TT_Task,"55902",-,-,-,0,TK_NotStart,28/06/2022,,22/08/2022,,"SI20BAA3B81 FS","SI20BAA3B81","SI20BAA4-43 FS","SI20BAA4-43",99,,107,,23,,25,,71,168,"HK1003 -Blackpoint D2 - Rev.0E DD30092021"
1-4613,SI20BAA4-43,"(OTD-OS) ON SITE (ET8) IPB FIRST PARTS / SADDLES 20BAA",5121,"HK1003-Rev.0E-3",TT_FinMile,"55902",-,-,-,0,TK_NotStart,22/08/2022,,22/08/2022,,"SI20BAA4-42 FS","SI20BAA4-42","SI20BAA7-67 FS","SI20BAA7-67",107,,107,,25,,25,,78,168,"HK1003 -Blackpoint D2 - Rev.0E DD30092021"
1-4614,SI20BAA4-41,"LOGISTICS AND CUSTOMS PREPARATION IPB FIRST PARTS / SADDLES 20BAA",5121,"HK1003-Rev.0E-3",TT_Task,"55902",-,-,-,0,TK_NotStart,31/05/2022,,27/06/2022,,"SI20BAA3-71 FS,SI20BAA3-72 FS","SI20BAA3-71,SI20BAA3-72","SI20BAA3B81 FS","SI20BAA3B81",95,,99,,22,,23,,67,168,"HK1003 -Blackpoint D2 - Rev.0E DD30092021"
1-4615,SI20BAA3-71,"TIMES OF COMPLETION (FINAL DATA IN KANLOG) IPB FIRST PARTS / SADDLES 20BAA",5121,"HK1003-Rev.0E-3",TT_FinMile,"55902",-,-,-,0,TK_NotStart,30/05/2022,,30/05/2022,,"SI20BAA3-72 FS","SI20BAA3-72","SI20BAA4-41 FS","SI20BAA4-41",95,,95,,22,,22,,67,168,"HK1003 -Blackpoint D2 - Rev.0E DD30092021"
1-4616,SI20UBD5-64,"CONSTRUCTION FOUNDATION 20UBG01/02- Rebarwork baseslab/foundation",5121,"HK1003-Rev.0E-3",TT_Task,"55902",-,-,-,0,TK_NotStart,01/05/2022,,14/05/2022,,"SI20UBD5-61.00 FS","SI20UBD5-61.00","SI20UBD5-61.01 FS","SI20UBD5-61.01",91,,93,,21,,21,,61,1144,"HK1003 -Blackpoint D2 - Rev.0E DD30092021"
1-4617,SI20UBD5-65,"CONSTRUCTION PLINTHS 20UBD01/02",5121,"HK1003-Rev.0E-3",TT_Task,"55902",-,-,-,0,TK_NotStart,28/05/2022,,10/06/2022,,"SI20UBD5-15 FS","SI20UBD5-15","SI20UBD5-45 FS","SI20UBD5-45",95,,96,,22,,22,,67,1064,"HK1003 -Blackpoint D2 - Rev.0E DD30092021"
1-4618,SI20UBX5-46,"CONSTRUCTION PLINTHS 20UBX/20UBG03",5121,"HK1003-Rev.0E-3",TT_Task,"55902",-,-,-,0,TK_NotStart,12/05/2022,,25/05/2022,,"SI20UBX5-15.03 FS","SI20UBX5-15.03","SI20UBX5-45 FS,SI20UBX5-15 FF","SI20UBX5-45,SI20UBX5-15",92,,94,,21,,22,,64,1000,"HK1003 -Blackpoint D2 - Rev.0E DD30092021"
1-4619,SI20TPM5B8-30,"COMMISSIONING OF TP-M5B",5121,"HK1003-Rev.0E-3",TT_Task,"55902",-,-,-,0,TK_NotStart,25/07/2023,,31/07/2023,,"SI20TPM5B6-25 FS,SI20TPM5B8-26 FS,SI20GKB8A10 FS","SI20TPM5B6-25,SI20TPM5B8-26,SI20GKB8A10","SI20M--9-70 FS","SI20M--9-70",155,,156,,36,,36,,99,0,"HK1003 -Blackpoint D2 - Rev.0E DD30092021"
1-4620,SI20TPM5B3-15,"MATERIAL FOR TP INTEGRATION ON SITE TP-M5B",5121,"HK1003-Rev.0E-3",TT_Mile,"55902",-,-,-,0,TK_NotStart,26/11/2022,,26/11/2022,,"SI20TPM5B2-5 FS,SI20TPM5B2-10 FS","SI20TPM5B2-5,SI20TPM5B2-10","SI20TPM5B6-25 FS,SI20TPM5B6-20 FS","SI20TPM5B6-25,SI20TPM5B6-20",121,,121,,28,,28,,86,1312,"HK1003 -Blackpoint D2 - Rev.0E DD30092021"
1-4621,SI20TPM5B6-25,"TERMINATION OF TP-M5B",5121,"HK1003-Rev.0E-3",TT_Task,"55902",-,-,-,0,TK_NotStart,28/01/2023,,10/02/2023,,"SI20TPM5B3-15 FS,SI20TPM5B6-20 FS,SI20TPM5B2-16 FS,SI20GKB6H15 SS,SI20GKB6H16 SS","SI20TPM5B3-15,SI20TPM5B6-20,SI20TPM5B2-16,SI20GKB6H15,SI20GKB6H16","SI20TPM5B8-30 FS,SI20TPM5B8-26 FS","SI20TPM5B8-30,SI20TPM5B8-26",130,,131,,30,,30,,89,1312,"HK1003 -Blackpoint D2 - Rev.0E DD30092021"
1-4622,SI20TPM5B2-5,"TECHNICAL CLARIFICATION WITH CUSTOMER / DESIGN FOR CONNECTION OF TP-M5B",5121,"HK1003-Rev.0E-3",TT_Task,"55902",-,-,-,100,TK_Complete,11/04/2021,11/04/2021,08/05/2021,08/05/2021,"SI-----1-05 FS,SI--M--2D21 FS","SI-----1-05,SI--M--2D21","SI20TPM5B2-10 FS,SI20TPM5B3-15 FS,SI---2P2A10 FS","SI20TPM5B2-10,SI20TPM5B3-15,SI---2P2A10",36,36,40,40,8,8,9,9,8,,"HK1003 -Blackpoint D2 - Rev.0E DD30092021"
1-4623,SI20TPM5B2-10,"FINAL AGREEMENT WITH CUSTOMER / ACCESS TIME / REQUIREMENTS TO TP ALIGNED TP-M5B",5121,"HK1003-Rev.0E-3",TT_Mile,"55902",-,-,-,0,TK_NotStart,01/09/2022,,01/09/2022,,"SI20TPM5B2-5 FS","SI20TPM5B2-5","SI20TPM5B6-20 FS,SI20TPM5B2-11 FS,SI20TPM5B3-15 FS","SI20TPM5B6-20,SI20TPM5B2-11,SI20TPM5B3-15",108,,108,,25,,25,,80,1944,"HK1003 -Blackpoint D2 - Rev.0E DD30092021"
1-4624,SI20TPM5B6-20,"INSTALLATION OF CONNECTION MATERIAL IN CUSTOMER SITE TP-M5B",5121,"HK1003-Rev.0E-3",TT_Task,"55902",-,-,-,0,TK_NotStart,26/11/2022,,27/01/2023,,"SI20TPM5B2-10 FS,SI20TPM5B3-15 FS,SI20TPM5B2-11 FS,SI20GKB6H16 SS,SI20TP-117& FS,SI20UBF615 SS","SI20TPM5B2-10,SI20TPM5B3-15,SI20TPM5B2-11,SI20GKB6H16,SI20TP-117&,SI20UBF615","SI20TPM5B6-25 FS,SI20TPM5B2-16 FS","SI20TPM5B6-25,SI20TPM5B2-16",121,,129,,28,,30,,86,1312,"HK1003 -Blackpoint D2 - Rev.0E DD30092021"
1-4625,SI20TPM5B2-11,"UPDATE OF TRANSITION PLAN TP-M5B",5121,"HK1003-Rev.0E-3",TT_Task,"55902",-,-,-,0,TK_NotStart,01/09/2022,,07/09/2022,,"SI20TPM5B2-10 FS","SI20TPM5B2-10","SI20TPM5B6-20 FS","SI20TPM5B6-20",108,,109,,25,,25,,80,1944,"HK1003 -Blackpoint D2 - Rev.0E DD30092021"
1-4626,SI20TPM5B2-16,"ALL RELEVANT PERMITS & LOTO AVAILABLE FROM CUSTOMER TP-M5B",5121,"HK1003-Rev.0E-3",TT_Mile,"55902",-,-,-,0,TK_NotStart,28/01/2023,,28/01/2023,,"SI20TPM5B6-20 FS","SI20TPM5B6-20","SI20TPM5B6-25 FS","SI20TPM5B6-25",130,,130,,30,,30,,89,1312,"HK1003 -Blackpoint D2 - Rev.0E DD30092021"
1-4627,SI20TPM5B8-26,"MEDIA  AVAILABLE TP-M5B",5121,"HK1003-Rev.0E-3",TT_Mile,"55902",-,-,-,0,TK_NotStart,25/07/2023,,25/07/2023,,"SI20TPM5B6-25 FS","SI20TPM5B6-25","SI20TPM5B8-30 FS","SI20TPM5B8-30",155,,155,,36,,36,,99,0,"HK1003 -Blackpoint D2 - Rev.0E DD30092021"
1-4628,SI20TPM6A8-30,"COMMISSIONING OF TP-M6A",5121,"HK1003-Rev.0E-3",TT_Task,"55902",-,-,-,0,TK_NotStart,23/04/2023,,29/04/2023,,"SI20TPM6A6-25 FS,SI20TPM6A8-26 FS,SI20GHD8A10 FS","SI20TPM6A6-25,SI20TPM6A8-26,SI20GHD8A10","SI20M--9-70 FS,SI20GHD8A35 FS","SI20M--9-70,SI20GHD8A35",142,,143,,33,,33,,96,64,"HK1003 -Blackpoint D2 - Rev.0E DD30092021"
1-4629,SI20TPM6A3-15,"MATERIAL FOR TP INTEGRATION ON SITE TP-M6A",5121,"HK1003-Rev.0E-3",TT_Mile,"55902",-,-,-,0,TK_NotStart,29/08/2022,,29/08/2022,,"SI20TPM6A2-5 FS,SI20TPM6A2-10 FS","SI20TPM6A2-5,SI20TPM6A2-10","SI20TPM6A6-25 FS,SI20TPM6A6-20 FS","SI20TPM6A6-25,SI20TPM6A6-20",108,,108,,25,,25,,79,1344,"HK1003 -Blackpoint D2 - Rev.0E DD30092021"
1-4630,SI20TPM6A6-25,"TERMINATION OF TP-M6A",5121,"HK1003-Rev.0E-3",TT_Task,"55902",-,-,-,0,TK_NotStart,31/10/2022,,13/11/2022,,"SI20TPM6A3-15 FS,SI20TPM6A6-20 FS,SI20TPM6A2-16 FS","SI20TPM6A3-15,SI20TPM6A6-20,SI20TPM6A2-16","SI20TPM6A8-30 FS,SI20TPM6A8-26 FS","SI20TPM6A8-30,SI20TPM6A8-26",117,,119,,27,,27,,84,1344,"HK1003 -Blackpoint D2 - Rev.0E DD30092021"
1-4631,SI20TPM6A2-5,"TECHNICAL CLARIFICATION WITH CUSTOMER / DESIGN FOR CONNECTION OF TP-M6A",5121,"HK1003-Rev.0E-3",TT_Task,"55902",-,-,-,100,TK_Complete,11/04/2021,11/04/2021,08/05/2021,08/05/2021,"SI-----1-05 FS,SI--M--2D21 FS","SI-----1-05,SI--M--2D21","SI20TPM6A2-10 FS,SI20TPM6A3-15 FS,SI---2P2A10 FS,SI-P222-170 FS","SI20TPM6A2-10,SI20TPM6A3-15,SI---2P2A10,SI-P222-170",36,36,40,40,8,8,9,9,8,,"HK1003 -Blackpoint D2 - Rev.0E DD30092021"
1-4632,SI20TPM6A2-10,"FINAL AGREEMENT WITH CUSTOMER / ACCESS TIME / REQUIREMENTS TO TP ALIGNED TP-M6A",5121,"HK1003-Rev.0E-3",TT_Mile,"55902",-,-,-,0,TK_NotStart,08/05/2022,,08/05/2022,,"SI20TPM6A2-5 FS","SI20TPM6A2-5","SI20TPM6A6-20 FS,SI20TPM6A2-11 FS,SI20TPM6A3-15 FS","SI20TPM6A6-20,SI20TPM6A2-11,SI20TPM6A3-15",92,,92,,21,,21,,64,2192,"HK1003 -Blackpoint D2 - Rev.0E DD30092021"
1-4633,SI20TPM6A6-20,"INSTALLATION OF CONNECTION MATERIAL IN CUSTOMER SITE TP-M6A",5121,"HK1003-Rev.0E-3",TT_Task,"55902",-,-,-,0,TK_NotStart,29/08/2022,,30/10/2022,,"SI20TPM6A2-10 FS,SI20TPM6A3-15 FS,SI20TPM6A2-11 FS,SI20TP-118& FS,SI20UEZ6B-10 SS,SI-P222-115 FS","SI20TPM6A2-10,SI20TPM6A3-15,SI20TPM6A2-11,SI20TP-118&,SI20UEZ6B-10,SI-P222-115","SI20TPM6A6-25 FS,SI20TPM6A2-16 FS","SI20TPM6A6-25,SI20TPM6A2-16",108,,117,,25,,27,,79,1344,"HK1003 -Blackpoint D2 - Rev.0E DD30092021"
1-4634,SI20TPM6A2-11,"UPDATE OF TRANSITION PLAN TP-M6A",5121,"HK1003-Rev.0E-3",TT_Task,"55902",-,-,-,0,TK_NotStart,08/05/2022,,14/05/2022,,"SI20TPM6A2-10 FS","SI20TPM6A2-10","SI20TPM6A6-20 FS","SI20TPM6A6-20",92,,93,,21,,21,,64,2192,"HK1003 -Blackpoint D2 - Rev.0E DD30092021"
1-4635,SI20TPM6A2-16,"ALL RELEVANT PERMITS & LOTO AVAILABLE FROM CUSTOMER TP-M6A",5121,"HK1003-Rev.0E-3",TT_Mile,"55902",-,-,-,0,TK_NotStart,31/10/2022,,31/10/2022,,"SI20TPM6A6-20 FS","SI20TPM6A6-20","SI20TPM6A6-25 FS","SI20TPM6A6-25",117,,117,,27,,27,,84,1344,"HK1003 -Blackpoint D2 - Rev.0E DD30092021"
1-4636,SI20TPM6A8-26,"MEDIA  AVAILABLE TP-M6A",5121,"HK1003-Rev.0E-3",TT_Mile,"55902",-,-,-,0,TK_NotStart,23/04/2023,,23/04/2023,,"SI20TPM6A6-25 FS","SI20TPM6A6-25","SI20TPM6A8-30 FS","SI20TPM6A8-30",142,,142,,33,,33,,96,64,"HK1003 -Blackpoint D2 - Rev.0E DD30092021"
1-4637,SI20TPM6B8-30,"COMMISSIONING OF TP-M6B",5121,"HK1003-Rev.0E-3",TT_Task,"55902",-,-,-,0,TK_NotStart,23/04/2023,,29/04/2023,,"SI20TPM6B6-25 FS,SI20TPM6B8-26 FS,SI20GHD8A10 FS","SI20TPM6B6-25,SI20TPM6B8-26,SI20GHD8A10","SI20GHD8A35 FS","SI20GHD8A35",142,,143,,33,,33,,96,64,"HK1003 -Blackpoint D2 - Rev.0E DD30092021"
1-4638,SI20TPM6B3-15,"MATERIAL FOR TP INTEGRATION ON SITE TP-M6B",5121,"HK1003-Rev.0E-3",TT_Mile,"55902",-,-,-,0,TK_NotStart,16/08/2022,,16/08/2022,,"SI20TPM6B2-5 FS","SI20TPM6B2-5","SI20TPM6B6-25 FS,SI20TPM6B6-20 FS","SI20TPM6B6-25,SI20TPM6B6-20",106,,106,,24,,24,,78,1424,"HK1003 -Blackpoint D2 - Rev.0E DD30092021"
1-4639,SI20TPM6B6-25,"TERMINATION OF TP-M6B",5121,"HK1003-Rev.0E-3",TT_Task,"55902",-,-,-,0,TK_NotStart,21/10/2022,,03/11/2022,,"SI20TPM6B3-15 FS,SI20TPM6B6-20 FS,SI20TPM6B2-16 FS","SI20TPM6B3-15,SI20TPM6B6-20,SI20TPM6B2-16","SI20TPM6B8-30 FS,SI20TPM6B8-26 FS","SI20TPM6B8-30,SI20TPM6B8-26",115,,117,,27,,27,,83,1424,"HK1003 -Blackpoint D2 - Rev.0E DD30092021"
1-4640,SI20TPM6B2-5,"TECHNICAL CLARIFICATION WITH CUSTOMER / DESIGN FOR CONNECTION OF TP-M6B",5121,"HK1003-Rev.0E-3",TT_Task,"55902",-,-,-,100,TK_Complete,11/04/2021,11/04/2021,08/05/2021,08/05/2021,"SI-----1-05 FS,SI--M--2D21 FS","SI-----1-05,SI--M--2D21","SI20TPM6B2-10 FS,SI20TPM6B3-15 FS,SI---2P2A10 FS,SI-P222-170 FS","SI20TPM6B2-10,SI20TPM6B3-15,SI---2P2A10,SI-P222-170",36,36,40,40,8,8,9,9,8,,"HK1003 -Blackpoint D2 - Rev.0E DD30092021"
1-4641,SI20TPM6B2-10,"FINAL AGREEMENT WITH CUSTOMER / ACCESS TIME / REQUIREMENTS TO TP ALIGNED TP-M6B",5121,"HK1003-Rev.0E-3",TT_Mile,"55902",-,-,-,0,TK_NotStart,08/05/2022,,08/05/2022,,"SI20TPM6B2-5 FS","SI20TPM6B2-5","SI20TPM6B6-20 FS,SI20TPM6B2-11 FS","SI20TPM6B6-20,SI20TPM6B2-11",92,,92,,21,,21,,64,2168,"HK1003 -Blackpoint D2 - Rev.0E DD30092021"
1-4642,SI20TPM6B6-20,"INSTALLATION OF CONNECTION MATERIAL IN CUSTOMER SITE TP-M6B",5121,"HK1003-Rev.0E-3",TT_Task,"55902",-,-,-,0,TK_NotStart,16/08/2022,,20/10/2022,,"SI20TPM6B2-10 FS,SI20TPM6B3-15 FS,SI20TPM6B2-11 FS,SI20GHD6I15 SS,SI20TP-119& FS,SI20UBF615 SS","SI20TPM6B2-10,SI20TPM6B3-15,SI20TPM6B2-11,SI20GHD6I15,SI20TP-119&,SI20UBF615","SI20TPM6B6-25 FS,SI20TPM6B2-16 FS","SI20TPM6B6-25,SI20TPM6B2-16",106,,115,,24,,27,,78,1424,"HK1003 -Blackpoint D2 - Rev.0E DD30092021"
1-4643,SI20TPM6B2-11,"UPDATE OF TRANSITION PLAN TP-M6B",5121,"HK1003-Rev.0E-3",TT_Task,"55902",-,-,-,0,TK_NotStart,08/05/2022,,14/05/2022,,"SI20TPM6B2-10 FS","SI20TPM6B2-10","SI20TPM6B6-20 FS","SI20TPM6B6-20",92,,93,,21,,21,,64,2168,"HK1003 -Blackpoint D2 - Rev.0E DD30092021"
1-4644,SI20TPM6B2-16,"ALL RELEVANT PERMITS & LOTO AVAILABLE FROM CUSTOMER TP-M6B",5121,"HK1003-Rev.0E-3",TT_Mile,"55902",-,-,-,0,TK_NotStart,21/10/2022,,21/10/2022,,"SI20TPM6B6-20 FS","SI20TPM6B6-20","SI20TPM6B6-25 FS","SI20TPM6B6-25",115,,115,,27,,27,,83,1424,"HK1003 -Blackpoint D2 - Rev.0E DD30092021"
1-4645,SI20TPM6B8-26,"MEDIA  AVAILABLE TP-M6B",5121,"HK1003-Rev.0E-3",TT_Mile,"55902",-,-,-,0,TK_NotStart,23/04/2023,,23/04/2023,,"SI20TPM6B6-25 FS","SI20TPM6B6-25","SI20TPM6B8-30 FS","SI20TPM6B8-30",142,,142,,33,,33,,96,64,"HK1003 -Blackpoint D2 - Rev.0E DD30092021"
1-4646,SI20TPM7A8-30,"COMMISSIONING OF TP-M7A",5121,"HK1003-Rev.0E-3",TT_Task,"55902",-,-,-,0,TK_NotStart,27/05/2023,,02/06/2023,,"SI20TPM7A6-25 FS,SI20TPM7A8-26 FS,SI20MKG8-26 FS","SI20TPM7A6-25,SI20TPM7A8-26,SI20MKG8-26","SI20MB-9-15 FS,SI20MKA8-25 FF","SI20MB-9-15,SI20MKA8-25",147,,147,,34,,34,,97,0,"HK1003 -Blackpoint D2 - Rev.0E DD30092021"
1-4647,SI20TPM7A3-15,"MATERIAL FOR TP INTEGRATION ON SITE TP-M7A",5121,"HK1003-Rev.0E-3",TT_Mile,"55902",-,-,-,0,TK_NotStart,07/10/2022,,07/10/2022,,"SI20TPM7A2-5 FS","SI20TPM7A2-5","SI20TPM7A6-25 FS,SI20TPM7A6-20 FS","SI20TPM7A6-25,SI20TPM7A6-20",113,,113,,26,,26,,82,1128,"HK1003 -Blackpoint D2 - Rev.0E DD30092021"
1-4648,SI20TPM7A6-25,"TERMINATION OF TP-M7A",5121,"HK1003-Rev.0E-3",TT_Task,"55902",-,-,-,0,TK_NotStart,23/12/2022,,05/01/2023,,"SI20TPM7A3-15 FS,SI20TPM7A6-20 FS,SI20TPM7A2-16 FS,SI20MKG6-15 FS,SI20MKG6A16 SS","SI20TPM7A3-15,SI20TPM7A6-20,SI20TPM7A2-16,SI20MKG6-15,SI20MKG6A16","SI20TPM7A8-30 FS,SI20TPM7A8-26 FS","SI20TPM7A8-30,SI20TPM7A8-26",124,,126,,29,,29,,87,1128,"HK1003 -Blackpoint D2 - Rev.0E DD30092021"
1-4649,SI20TPM7A2-5,"TECHNICAL CLARIFICATION WITH CUSTOMER / DESIGN FOR CONNECTION OF TP-M7A",5121,"HK1003-Rev.0E-3",TT_Task,"55902",-,-,-,100,TK_Complete,11/04/2021,11/04/2021,08/05/2021,08/05/2021,"SI-----1-05 FS,SI--M--2D21 FS","SI-----1-05,SI--M--2D21","SI20TPM7A2-10 FS,SI20TPM7A3-15 FS,SI---2P2A10 FS","SI20TPM7A2-10,SI20TPM7A3-15,SI---2P2A10",36,36,40,40,8,8,9,9,8,,"HK1003 -Blackpoint D2 - Rev.0E DD30092021"
1-4650,SI20TPM7A2-10,"FINAL AGREEMENT WITH CUSTOMER / ACCESS TIME / REQUIREMENTS TO TP ALIGNED TP-M7A",5121,"HK1003-Rev.0E-3",TT_Mile,"55902",-,-,-,0,TK_NotStart,17/07/2022,,17/07/2022,,"SI20TPM7A2-5 FS","SI20TPM7A2-5","SI20TPM7A6-20 FS,SI20TPM7A2-11 FS","SI20TPM7A6-20,SI20TPM7A2-11",102,,102,,23,,23,,74,1728,"HK1003 -Blackpoint D2 - Rev.0E DD30092021"
1-4651,SI20TPM7A6-20,"INSTALLATION OF CONNECTION MATERIAL IN CUSTOMER SITE TP-M7A",5121,"HK1003-Rev.0E-3",TT_Task,"55902",-,-,-,0,TK_NotStart,07/10/2022,,22/12/2022,,"SI20TPM7A2-10 FS,SI20TPM7A3-15 FS,SI20TPM7A2-11 FS,SI20MKG6A16 SS,SI20TP-120& FS,SI20UEZ6B-10 SS","SI20TPM7A2-10,SI20TPM7A3-15,SI20TPM7A2-11,SI20MKG6A16,SI20TP-120&,SI20UEZ6B-10","SI20TPM7A6-25 FS,SI20TPM7A2-16 FS","SI20TPM7A6-25,SI20TPM7A2-16",113,,124,,26,,29,,83,1128,"HK1003 -Blackpoint D2 - Rev.0E DD30092021"
1-4652,SI20TPM7A2-11,"UPDATE OF TRANSITION PLAN TP-M7A",5121,"HK1003-Rev.0E-3",TT_Task,"55902",-,-,-,0,TK_NotStart,17/07/2022,,23/07/2022,,"SI20TPM7A2-10 FS","SI20TPM7A2-10","SI20TPM7A6-20 FS","SI20TPM7A6-20",102,,103,,23,,24,,74,1728,"HK1003 -Blackpoint D2 - Rev.0E DD30092021"
1-4653,SI20TPM7A2-16,"ALL RELEVANT PERMITS & LOTO AVAILABLE FROM CUSTOMER TP-M7A",5121,"HK1003-Rev.0E-3",TT_Mile,"55902",-,-,-,0,TK_NotStart,23/12/2022,,23/12/2022,,"SI20TPM7A6-20 FS","SI20TPM7A6-20","SI20TPM7A6-25 FS","SI20TPM7A6-25",124,,124,,29,,29,,87,1128,"HK1003 -Blackpoint D2 - Rev.0E DD30092021"
1-4654,SI20TPM7A8-26,"MEDIA  AVAILABLE TP-M7A",5121,"HK1003-Rev.0E-3",TT_Mile,"55902",-,-,-,0,TK_NotStart,27/05/2023,,27/05/2023,,"SI20TPM7A6-25 FS","SI20TPM7A6-25","SI20TPM7A8-30 FS","SI20TPM7A8-30",147,,147,,34,,34,,97,0,"HK1003 -Blackpoint D2 - Rev.0E DD30092021"
1-4655,SI20TPM7B8-30,"COMMISSIONING OF TP-M7B",5121,"HK1003-Rev.0E-3",TT_Task,"55902",-,-,-,0,TK_NotStart,31/05/2023,,06/06/2023,,"SI20TPM7B6-25 FS,SI20TPM7B8-26 FS,SI20MKG8-26 FS","SI20TPM7B6-25,SI20TPM7B8-26,SI20MKG8-26","SI20MKA8-25 FF,SI20MB-9-15 FS","SI20MKA8-25,SI20MB-9-15",147,,148,,34,,34,,97,136,"HK1003 -Blackpoint D2 - Rev.0E DD30092021"
1-4656,SI20TPM7B3-15,"MATERIAL FOR TP INTEGRATION ON SITE TP-M7B",5121,"HK1003-Rev.0E-3",TT_Mile,"55902",-,-,-,0,TK_NotStart,07/10/2022,,07/10/2022,,"SI20TPM7B2-5 FS","SI20TPM7B2-5","SI20TPM7B6-25 FS,SI20TPM7B6-20 FS","SI20TPM7B6-25,SI20TPM7B6-20",113,,113,,26,,26,,83,1296,"HK1003 -Blackpoint D2 - Rev.0E DD30092021"
1-4657,SI20TPM7B6-25,"TERMINATION OF TP-M7B",5121,"HK1003-Rev.0E-3",TT_Task,"55902",-,-,-,0,TK_NotStart,23/12/2022,,05/01/2023,,"SI20TPM7B3-15 FS,SI20TPM7B6-20 FS,SI20TPM7B2-16 FS,SI20MKG6-15 FS,SI20MKG6A16 SS","SI20TPM7B3-15,SI20TPM7B6-20,SI20TPM7B2-16,SI20MKG6-15,SI20MKG6A16","SI20TPM7B8-30 FS,SI20TPM7B8-26 FS","SI20TPM7B8-30,SI20TPM7B8-26",124,,126,,29,,29,,87,1296,"HK1003 -Blackpoint D2 - Rev.0E DD30092021"
1-4658,SI20TPM7B2-5,"TECHNICAL CLARIFICATION WITH CUSTOMER / DESIGN FOR CONNECTION OF TP-M7B",5121,"HK1003-Rev.0E-3",TT_Task,"55902",-,-,-,100,TK_Complete,11/04/2021,11/04/2021,08/05/2021,08/05/2021,"SI-----1-05 FS,SI--M--2D21 FS","SI-----1-05,SI--M--2D21","SI20TPM7B2-10 FS,SI20TPM7B3-15 FS,SI---2P2A10 FS","SI20TPM7B2-10,SI20TPM7B3-15,SI---2P2A10",36,36,40,40,8,8,9,9,8,,"HK1003 -Blackpoint D2 - Rev.0E DD30092021"
1-4659,SI20TPM7B2-10,"FINAL AGREEMENT WITH CUSTOMER / ACCESS TIME / REQUIREMENTS TO TP ALIGNED TP-M7B",5121,"HK1003-Rev.0E-3",TT_Mile,"55902",-,-,-,0,TK_NotStart,17/07/2022,,17/07/2022,,"SI20TPM7B2-5 FS","SI20TPM7B2-5","SI20TPM7B6-20 FS,SI20TPM7B2-11 FS","SI20TPM7B6-20,SI20TPM7B2-11",102,,102,,23,,23,,74,1896,"HK1003 -Blackpoint D2 - Rev.0E DD30092021"
1-4660,SI20TPM7B6-20,"INSTALLATION OF CONNECTION MATERIAL IN CUSTOMER SITE TP-M7B",5121,"HK1003-Rev.0E-3",TT_Task,"55902",-,-,-,0,TK_NotStart,07/10/2022,,22/12/2022,,"SI20TPM7B2-10 FS,SI20TPM7B3-15 FS,SI20TPM7B2-11 FS,SI20MKG6A16 SS,SI20TP-121& FS,SI20UEZ6B-10 SS","SI20TPM7B2-10,SI20TPM7B3-15,SI20TPM7B2-11,SI20MKG6A16,SI20TP-121&,SI20UEZ6B-10","SI20TPM7B6-25 FS,SI20TPM7B2-16 FS","SI20TPM7B6-25,SI20TPM7B2-16",113,,124,,26,,29,,83,1296,"HK1003 -Blackpoint D2 - Rev.0E DD30092021"
1-4661,SI20TPM7B2-11,"UPDATE OF TRANSITION PLAN TP-M7B",5121,"HK1003-Rev.0E-3",TT_Task,"55902",-,-,-,0,TK_NotStart,17/07/2022,,23/07/2022,,"SI20TPM7B2-10 FS","SI20TPM7B2-10","SI20TPM7B6-20 FS","SI20TPM7B6-20",102,,103,,23,,24,,74,1896,"HK1003 -Blackpoint D2 - Rev.0E DD30092021"
1-4662,SI20TPM7B2-16,"ALL RELEVANT PERMITS & LOTO AVAILABLE FROM CUSTOMER TP-M7B",5121,"HK1003-Rev.0E-3",TT_Mile,"55902",-,-,-,0,TK_NotStart,23/12/2022,,23/12/2022,,"SI20TPM7B6-20 FS","SI20TPM7B6-20","SI20TPM7B6-25 FS","SI20TPM7B6-25",124,,124,,29,,29,,87,1296,"HK1003 -Blackpoint D2 - Rev.0E DD30092021"
1-4663,SI20TPM7B8-26,"MEDIA  AVAILABLE TP-M7B",5121,"HK1003-Rev.0E-3",TT_Mile,"55902",-,-,-,0,TK_NotStart,31/05/2023,,31/05/2023,,"SI20TPM7B6-25 FS","SI20TPM7B6-25","SI20TPM7B8-30 FS","SI20TPM7B8-30",147,,147,,34,,34,,97,136,"HK1003 -Blackpoint D2 - Rev.0E DD30092021"
1-4664,SI20TPM8A8-30,"COMMISSIONING OF TP-M8A",5121,"HK1003-Rev.0E-3",TT_Task,"55902",-,-,-,0,TK_NotStart,31/05/2023,,06/06/2023,,"SI20TPM8A6-25 FS,SI20TPM8A8-26 FS,SI20MKG8-26 FS","SI20TPM8A6-25,SI20TPM8A8-26,SI20MKG8-26","SI20MKA8-25 FF,SI20MB-9-15 FS","SI20MKA8-25,SI20MB-9-15",147,,148,,34,,34,,97,136,"HK1003 -Blackpoint D2 - Rev.0E DD30092021"
1-4665,SI20TPM8A3-15,"MATERIAL FOR TP INTEGRATION ON SITE TP-M8A",5121,"HK1003-Rev.0E-3",TT_Mile,"55902",-,-,-,0,TK_NotStart,18/06/2022,,18/06/2022,,"SI20TPM8A2-5 FS","SI20TPM8A2-5","SI20TPM8A6-25 FS,SI20TPM8A6-20 FS","SI20TPM8A6-25,SI20TPM8A6-20",98,,98,,22,,22,,70,2016,"HK1003 -Blackpoint D2 - Rev.0E DD30092021"
1-4666,SI20TPM8A6-25,"TERMINATION OF TP-M8A",5121,"HK1003-Rev.0E-3",TT_Task,"55902",-,-,-,0,TK_NotStart,24/09/2022,,07/10/2022,,"SI20TPM8A3-15 FS,SI20TPM8A6-20 FS,SI20TPM8A2-16 FS","SI20TPM8A3-15,SI20TPM8A6-20,SI20TPM8A2-16","SI20TPM8A8-30 FS,SI20TPM8A8-26 FS","SI20TPM8A8-30,SI20TPM8A8-26",112,,113,,26,,26,,81,2016,"HK1003 -Blackpoint D2 - Rev.0E DD30092021"
1-4667,SI20TPM8A2-5,"TECHNICAL CLARIFICATION WITH CUSTOMER / DESIGN FOR CONNECTION OF TP-M8A",5121,"HK1003-Rev.0E-3",TT_Task,"55902",-,-,-,100,TK_Complete,11/04/2021,11/04/2021,08/05/2021,08/05/2021,"SI-----1-05 FS,SI--M--2D21 FS","SI-----1-05,SI--M--2D21","SI20TPM8A2-10 FS,SI20TPM8A3-15 FS,SI---2P2A10 FS","SI20TPM8A2-10,SI20TPM8A3-15,SI---2P2A10",36,36,40,40,8,8,9,9,8,,"HK1003 -Blackpoint D2 - Rev.0E DD30092021"
1-4668,SI20TPM8A2-10,"FINAL AGREEMENT WITH CUSTOMER / ACCESS TIME / REQUIREMENTS TO TP ALIGNED TP-M8A",5121,"HK1003-Rev.0E-3",TT_Mile,"55902",-,-,-,0,TK_NotStart,25/03/2022,,25/03/2022,,"SI20TPM8A2-5 FS","SI20TPM8A2-5","SI20TPM8A6-20 FS,SI20TPM8A2-11 FS","SI20TPM8A6-20,SI20TPM8A2-11",85,,85,,20,,20,,54,2640,"HK1003 -Blackpoint D2 - Rev.0E DD30092021"
1-4669,SI20TPM8A6-20,"INSTALLATION OF CONNECTION MATERIAL IN CUSTOMER SITE TP-M8A",5121,"HK1003-Rev.0E-3",TT_Task,"55902",-,-,-,0,TK_NotStart,18/06/2022,,23/09/2022,,"SI20TPM8A2-10 FS,SI20TPM8A3-15 FS,SI20TPM8A2-11 FS,SI20SCB6A15 SS,SI20TP-122& FS,SI20UEZ6B-10 SS","SI20TPM8A2-10,SI20TPM8A3-15,SI20TPM8A2-11,SI20SCB6A15,SI20TP-122&,SI20UEZ6B-10","SI20TPM8A6-25 FS,SI20TPM8A2-16 FS","SI20TPM8A6-25,SI20TPM8A2-16",98,,111,,22,,26,,70,2016,"HK1003 -Blackpoint D2 - Rev.0E DD30092021"
1-4670,SI20TPM8A2-11,"UPDATE OF TRANSITION PLAN TP-M8A",5121,"HK1003-Rev.0E-3",TT_Task,"55902",-,-,-,0,TK_NotStart,25/03/2022,,31/03/2022,,"SI20TPM8A2-10 FS","SI20TPM8A2-10","SI20TPM8A6-20 FS","SI20TPM8A6-20",85,,86,,20,,20,,54,2640,"HK1003 -Blackpoint D2 - Rev.0E DD30092021"
1-4671,SI20TPM8A2-16,"ALL RELEVANT PERMITS & LOTO AVAILABLE FROM CUSTOMER TP-M8A",5121,"HK1003-Rev.0E-3",TT_Mile,"55902",-,-,-,0,TK_NotStart,24/09/2022,,24/09/2022,,"SI20TPM8A6-20 FS","SI20TPM8A6-20","SI20TPM8A6-25 FS","SI20TPM8A6-25",112,,112,,26,,26,,81,2016,"HK1003 -Blackpoint D2 - Rev.0E DD30092021"
1-4672,SI20TPM8A8-26,"MEDIA  AVAILABLE TP-M8A",5121,"HK1003-Rev.0E-3",TT_Mile,"55902",-,-,-,0,TK_NotStart,31/05/2023,,31/05/2023,,"SI20TPM8A6-25 FS","SI20TPM8A6-25","SI20TPM8A8-30 FS","SI20TPM8A8-30",147,,147,,34,,34,,97,136,"HK1003 -Blackpoint D2 - Rev.0E DD30092021"
1-4673,SI20TPM9A8-30,"COMMISSIONING OF TP-M9A",5121,"HK1003-Rev.0E-3",TT_Task,"55902",-,-,-,0,TK_NotStart,13/06/2023,,19/06/2023,,"SI20TPM9A6-25 FS,SI20TPM9A8-26 FS,SI20QFB8-10 FS","SI20TPM9A6-25,SI20TPM9A8-26,SI20QFB8-10","SI20QFB8-25 SS","SI20QFB8-25",149,,150,,34,,35,,98,32,"HK1003 -Blackpoint D2 - Rev.0E DD30092021"
1-4674,SI20TPM9A3-15,"MATERIAL FOR TP INTEGRATION ON SITE TP-M9A",5121,"HK1003-Rev.0E-3",TT_Mile,"55902",-,-,-,0,TK_NotStart,18/06/2022,,18/06/2022,,"SI20TPM9A2-5 FS","SI20TPM9A2-5","SI20TPM9A6-25 FS,SI20TPM9A6-20 FS","SI20TPM9A6-25,SI20TPM9A6-20",98,,98,,22,,22,,70,2016,"HK1003 -Blackpoint D2 - Rev.0E DD30092021"
1-4675,SI20TPM9A6-25,"TERMINATION OF TP-M9A",5121,"HK1003-Rev.0E-3",TT_Task,"55902",-,-,-,0,TK_NotStart,24/09/2022,,07/10/2022,,"SI20TPM9A3-15 FS,SI20TPM9A6-20 FS,SI20TPM9A2-16 FS","SI20TPM9A3-15,SI20TPM9A6-20,SI20TPM9A2-16","SI20TPM9A8-30 FS,SI20TPM9A8-26 FS","SI20TPM9A8-30,SI20TPM9A8-26",112,,113,,26,,26,,81,2016,"HK1003 -Blackpoint D2 - Rev.0E DD30092021"
1-4676,SI20TPM9A2-5,"TECHNICAL CLARIFICATION WITH CUSTOMER / DESIGN FOR CONNECTION OF TP-M9A",5121,"HK1003-Rev.0E-3",TT_Task,"55902",-,-,-,100,TK_Complete,16/04/2021,16/04/2021,13/05/2021,13/05/2021,"SI-----1-05 FS,SI--M--2D21 FS","SI-----1-05,SI--M--2D21","SI20TPM9A2-10 FS,SI20TPM9A3-15 FS,SI---2P2A10 FS","SI20TPM9A2-10,SI20TPM9A3-15,SI---2P2A10",36,36,40,40,8,8,9,9,9,,"HK1003 -Blackpoint D2 - Rev.0E DD30092021"
1-4677,SI20TPM9A2-10,"FINAL AGREEMENT WITH CUSTOMER / ACCESS TIME / REQUIREMENTS TO TP ALIGNED TP-M9A",5121,"HK1003-Rev.0E-3",TT_Mile,"55902",-,-,-,0,TK_NotStart,25/03/2022,,25/03/2022,,"SI20TPM9A2-5 FS","SI20TPM9A2-5","SI20TPM9A6-20 FS,SI20TPM9A2-11 FS","SI20TPM9A6-20,SI20TPM9A2-11",85,,85,,20,,20,,54,2640,"HK1003 -Blackpoint D2 - Rev.0E DD30092021"
1-4678,SI20TPM9A6-20,"INSTALLATION OF CONNECTION MATERIAL IN CUSTOMER SITE TP-M9A",5121,"HK1003-Rev.0E-3",TT_Task,"55902",-,-,-,0,TK_NotStart,18/06/2022,,24/09/2022,,"SI20TPM9A2-10 FS,SI20TPM9A3-15 FS,SI20TPM9A2-11 FS,SI20SCB6A15 FF,SI20TP-129& FS,SI20UEZ6B-10 SS","SI20TPM9A2-10,SI20TPM9A3-15,SI20TPM9A2-11,SI20SCB6A15,SI20TP-129&,SI20UEZ6B-10","SI20TPM9A6-25 FS,SI20TPM9A2-16 FS","SI20TPM9A6-25,SI20TPM9A2-16",98,,112,,22,,26,,70,2016,"HK1003 -Blackpoint D2 - Rev.0E DD30092021"
1-4679,SI20TPM9A2-11,"UPDATE OF TRANSITION PLAN TP-M9A",5121,"HK1003-Rev.0E-3",TT_Task,"55902",-,-,-,0,TK_NotStart,25/03/2022,,31/03/2022,,"SI20TPM9A2-10 FS","SI20TPM9A2-10","SI20TPM9A6-20 FS","SI20TPM9A6-20",85,,86,,20,,20,,54,2640,"HK1003 -Blackpoint D2 - Rev.0E DD30092021"
1-4680,SI20TPM9A2-16,"ALL RELEVANT PERMITS & LOTO AVAILABLE FROM CUSTOMER TP-M9A",5121,"HK1003-Rev.0E-3",TT_Mile,"55902",-,-,-,0,TK_NotStart,24/09/2022,,24/09/2022,,"SI20TPM9A6-20 FS","SI20TPM9A6-20","SI20TPM9A6-25 FS","SI20TPM9A6-25",112,,112,,26,,26,,82,2016,"HK1003 -Blackpoint D2 - Rev.0E DD30092021"
1-4681,SI20TPM9A8-26,"MEDIA  AVAILABLE TP-M9A",5121,"HK1003-Rev.0E-3",TT_Mile,"55902",-,-,-,0,TK_NotStart,13/06/2023,,13/06/2023,,"SI20TPM9A6-25 FS","SI20TPM9A6-25","SI20TPM9A8-30 FS","SI20TPM9A8-30",149,,149,,34,,34,,98,32,"HK1003 -Blackpoint D2 - Rev.0E DD30092021"
1-4682,SI20TPM9B8-30,"COMMISSIONING OF TP-M9B",5121,"HK1003-Rev.0E-3",TT_Task,"55902",-,-,-,0,TK_NotStart,13/06/2023,,19/06/2023,,"SI20TPM9B6-25 FS,SI20TPM9B8-26 FS,SI20SCA8-16 FS","SI20TPM9B6-25,SI20TPM9B8-26,SI20SCA8-16","SI20MAN8-25 SS,SI20QFB8-25 SS","SI20MAN8-25,SI20QFB8-25",149,,150,,34,,35,,98,32,"HK1003 -Blackpoint D2 - Rev.0E DD30092021"
1-4683,SI20TPM9B3-15,"MATERIAL FOR TP INTEGRATION ON SITE TP-M9B",5121,"HK1003-Rev.0E-3",TT_Mile,"55902",-,-,-,0,TK_NotStart,18/05/2022,,18/05/2022,,"SI20TPM9B2-5 FS","SI20TPM9B2-5","SI20TPM9B6-25 FS,SI20TPM9B6-20 FS","SI20TPM9B6-25,SI20TPM9B6-20",93,,93,,21,,21,,65,2264,"HK1003 -Blackpoint D2 - Rev.0E DD30092021"
1-4684,SI20TPM9B6-25,"TERMINATION OF TP-M9B",5121,"HK1003-Rev.0E-3",TT_Task,"55902",-,-,-,0,TK_NotStart,24/08/2022,,06/09/2022,,"SI20TPM9B3-15 FS,SI20TPM9B6-20 FS,SI20TPM9B2-16 FS","SI20TPM9B3-15,SI20TPM9B6-20,SI20TPM9B2-16","SI20TPM9B8-30 FS,SI20TPM9B8-26 FS","SI20TPM9B8-30,SI20TPM9B8-26",107,,109,,25,,25,,78,2264,"HK1003 -Blackpoint D2 - Rev.0E DD30092021"
1-4685,SI20TPM9B2-5,"TECHNICAL CLARIFICATION WITH CUSTOMER / DESIGN FOR CONNECTION OF TP-M9B",5121,"HK1003-Rev.0E-3",TT_Task,"55902",-,-,-,100,TK_Complete,11/04/2021,11/04/2021,08/05/2021,08/05/2021,"SI-----1-05 FS,SI--M--2D21 FS","SI-----1-05,SI--M--2D21","SI20TPM9B2-10 FS,SI20TPM9B3-15 FS,SI---2P2A10 FS","SI20TPM9B2-10,SI20TPM9B3-15,SI---2P2A10",36,36,40,40,8,8,9,9,8,,"HK1003 -Blackpoint D2 - Rev.0E DD30092021"
1-4686,SI20TPM9B2-10,"FINAL AGREEMENT WITH CUSTOMER / ACCESS TIME / REQUIREMENTS TO TP ALIGNED TP-M9B",5121,"HK1003-Rev.0E-3",TT_Mile,"55902",-,-,-,0,TK_NotStart,09/02/2022,,09/02/2022,,"SI20TPM9B2-5 FS","SI20TPM9B2-5","SI20TPM9B6-20 FS,SI20TPM9B2-11 FS","SI20TPM9B6-20,SI20TPM9B2-11",79,,79,,18,,18,,48,2376,"HK1003 -Blackpoint D2 - Rev.0E DD30092021"
1-4687,SI20TPM9B6-20,"INSTALLATION OF CONNECTION MATERIAL IN CUSTOMER SITE TP-M9B",5121,"HK1003-Rev.0E-3",TT_Task,"55902",-,-,-,0,TK_NotStart,18/05/2022,,23/08/2022,,"SI20TPM9B2-10 FS,SI20TPM9B3-15 FS,SI20TPM9B2-11 FS,SI20TP-130& FS,SI20UEZ6B-10 SS","SI20TPM9B2-10,SI20TPM9B3-15,SI20TPM9B2-11,SI20TP-130&,SI20UEZ6B-10","SI20TPM9B6-25 FS,SI20TPM9B2-16 FS","SI20TPM9B6-25,SI20TPM9B2-16",93,,107,,21,,25,,65,2264,"HK1003 -Blackpoint D2 - Rev.0E DD30092021"
1-4688,SI20TPM9B2-11,"UPDATE OF TRANSITION PLAN TP-M9B",5121,"HK1003-Rev.0E-3",TT_Task,"55902",-,-,-,0,TK_NotStart,09/02/2022,,15/02/2022,,"SI20TPM9B2-10 FS","SI20TPM9B2-10","SI20TPM9B6-20 FS","SI20TPM9B6-20",79,,80,,18,,18,,48,2376,"HK1003 -Blackpoint D2 - Rev.0E DD30092021"
1-4689,SI20TPM9B2-16,"ALL RELEVANT PERMITS & LOTO AVAILABLE FROM CUSTOMER TP-M9B",5121,"HK1003-Rev.0E-3",TT_Mile,"55902",-,-,-,0,TK_NotStart,24/08/2022,,24/08/2022,,"SI20TPM9B6-20 FS","SI20TPM9B6-20","SI20TPM9B6-25 FS","SI20TPM9B6-25",107,,107,,25,,25,,79,2264,"HK1003 -Blackpoint D2 - Rev.0E DD30092021"
1-4690,SI20TPM9B8-26,"MEDIA  AVAILABLE TP-M9B",5121,"HK1003-Rev.0E-3",TT_Mile,"55902",-,-,-,0,TK_NotStart,13/06/2023,,13/06/2023,,"SI20TPM9B6-25 FS","SI20TPM9B6-25","SI20TPM9B8-30 FS","SI20TPM9B8-30",149,,149,,34,,34,,98,32,"HK1003 -Blackpoint D2 - Rev.0E DD30092021"
1-4691,SI20TPM10A8-30,"COMMISSIONING OF TP-M10A",5121,"HK1003-Rev.0E-3",TT_Task,"55902",-,-,-,0,TK_NotStart,28/05/2022,,03/06/2022,,"SI20TPM10A6-25 FS,SI20TPM10A8-26 FS","SI20TPM10A6-25,SI20TPM10A8-26","SI20QC-8-25 FS,SI20QCB8-25 FS,SI20QCB8-10 FS","SI20QC-8-25,SI20QCB8-25,SI20QCB8-10",95,,95,,22,,22,,67,2504,"HK1003 -Blackpoint D2 - Rev.0E DD30092021"
1-4692,SI20TPM10A3-15,"MATERIAL FOR TP INTEGRATION ON SITE TP-M10A",5121,"HK1003-Rev.0E-3",TT_Mile,"55902",-,-,-,0,TK_NotStart,14/05/2022,,14/05/2022,,"SI20TPM10A2-5 FS","SI20TPM10A2-5","SI20TPM10A6-25 FS,SI20TPM10A6-20 FS","SI20TPM10A6-25,SI20TPM10A6-20",93,,93,,21,,21,,65,2336,"HK1003 -Blackpoint D2 - Rev.0E DD30092021"
1-4693,SI20TPM10A6-25,"TERMINATION OF TP-M10A",5121,"HK1003-Rev.0E-3",TT_Task,"55902",-,-,-,0,TK_NotStart,21/05/2022,,27/05/2022,,"SI20TPM10A3-15 FS,SI20TPM10A6-20 SS,SI20TPM10A2-16 FS","SI20TPM10A3-15,SI20TPM10A6-20,SI20TPM10A2-16","SI20TPM10A8-30 FS,SI20TPM10A8-26 FS","SI20TPM10A8-30,SI20TPM10A8-26",94,,94,,21,,22,,66,2504,"HK1003 -Blackpoint D2 - Rev.0E DD30092021"
1-4694,SI20TPM10A2-5,"TECHNICAL CLARIFICATION WITH CUSTOMER / DESIGN FOR CONNECTION OF TP-M10A",5121,"HK1003-Rev.0E-3",TT_Task,"55902",-,-,-,100,TK_Complete,11/04/2021,11/04/2021,08/05/2021,08/05/2021,"SI-----1-05 FS,SI--M--2D21 FS","SI-----1-05,SI--M--2D21","SI20TPM10A2-10 FS,SI20TPM10A3-15 FS,SI---2P2A10 FS","SI20TPM10A2-10,SI20TPM10A3-15,SI---2P2A10",36,36,40,40,8,8,9,9,8,,"HK1003 -Blackpoint D2 - Rev.0E DD30092021"
1-4695,SI20TPM10A2-10,"FINAL AGREEMENT WITH CUSTOMER / ACCESS TIME / REQUIREMENTS TO TP ALIGNED TP-M10A",5121,"HK1003-Rev.0E-3",TT_Mile,"55902",-,-,-,0,TK_NotStart,11/11/2021,,11/11/2021,,"SI20TPM10A2-5 FS","SI20TPM10A2-5","SI20TPM10A6-20 FS,SI20TPM10A2-11 FS","SI20TPM10A6-20,SI20TPM10A2-11",66,,66,,15,,15,,38,3752,"HK1003 -Blackpoint D2 - Rev.0E DD30092021"
1-4696,SI20TPM10A6-20,"INSTALLATION OF CONNECTION MATERIAL IN CUSTOMER SITE TP-M10A",5121,"HK1003-Rev.0E-3",TT_Task,"55902",-,-,-,0,TK_NotStart,14/05/2022,,27/05/2022,,"SI20TPM10A2-10 FS,SI20TPM10A3-15 FS,SI20TPM10A2-11 FS,SI20TP-131& FS","SI20TPM10A2-10,SI20TPM10A3-15,SI20TPM10A2-11,SI20TP-131&","SI20TPM10A6-25 SS,SI20TPM10A2-16 SS,SI20QC-6H15 FS","SI20TPM10A6-25,SI20TPM10A2-16,SI20QC-6H15",93,,94,,21,,22,,65,2336,"HK1003 -Blackpoint D2 - Rev.0E DD30092021"
1-4697,SI20TPM10A2-11,"UPDATE OF TRANSITION PLAN TP-M10A",5121,"HK1003-Rev.0E-3",TT_Task,"55902",-,-,-,0,TK_NotStart,11/11/2021,,17/11/2021,,"SI20TPM10A2-10 FS","SI20TPM10A2-10","SI20TPM10A6-20 FS","SI20TPM10A6-20",66,,67,,15,,15,,38,3752,"HK1003 -Blackpoint D2 - Rev.0E DD30092021"
1-4698,SI20TPM10A2-16,"ALL RELEVANT PERMITS & LOTO AVAILABLE FROM CUSTOMER TP-M10A",5121,"HK1003-Rev.0E-3",TT_Mile,"55902",-,-,-,0,TK_NotStart,14/05/2022,,14/05/2022,,"SI20TPM10A6-20 SS","SI20TPM10A6-20","SI20TPM10A6-25 FS","SI20TPM10A6-25",93,,93,,21,,21,,65,2560,"HK1003 -Blackpoint D2 - Rev.0E DD30092021"
1-4699,SI20TPM10A8-26,"MEDIA  AVAILABLE TP-M10A",5121,"HK1003-Rev.0E-3",TT_Mile,"55902",-,-,-,0,TK_NotStart,28/05/2022,,28/05/2022,,"SI20TPM10A6-25 FS","SI20TPM10A6-25","SI20TPM10A8-30 FS","SI20TPM10A8-30",95,,95,,22,,22,,67,2504,"HK1003 -Blackpoint D2 - Rev.0E DD30092021"
1-4700,SI20TPM13A8-30,"COMMISSIONING OF TP-M13A",5121,"HK1003-Rev.0E-3",TT_Task,"55902",-,-,-,0,TK_NotStart,16/06/2023,,22/06/2023,,"SI20TPM13A6-25 FS,SI20TPM13A8-26 FS,SI20HSJ8-11 FS","SI20TPM13A6-25,SI20TPM13A8-26,SI20HSJ8-11","SI20MB-9-15 FS,SI20HSJ8-26 FF","SI20MB-9-15,SI20HSJ8-26",149,,150,,34,,35,,98,64,"HK1003 -Blackpoint D2 - Rev.0E DD30092021"
1-4701,SI20TPM13A3-15,"MATERIAL FOR TP INTEGRATION ON SITE TP-M13A",5121,"HK1003-Rev.0E-3",TT_Mile,"55902",-,-,-,0,TK_NotStart,01/07/2022,,01/07/2022,,"SI20TPM13A2-5 FS","SI20TPM13A2-5","SI20TPM13A6-25 FS,SI20TPM13A6-20 FS","SI20TPM13A6-25,SI20TPM13A6-20",99,,99,,23,,23,,72,2080,"HK1003 -Blackpoint D2 - Rev.0E DD30092021"
1-4702,SI20TPM13A6-25,"TERMINATION OF TP-M13A",5121,"HK1003-Rev.0E-3",TT_Task,"55902",-,-,-,0,TK_NotStart,23/09/2022,,06/10/2022,,"SI20TPM13A3-15 FS,SI20TPM13A6-20 FS,SI20TPM13A2-16 FS","SI20TPM13A3-15,SI20TPM13A6-20,SI20TPM13A2-16","SI20TPM13A8-30 FS,SI20TPM13A8-26 FS","SI20TPM13A8-30,SI20TPM13A8-26",111,,113,,26,,26,,81,2080,"HK1003 -Blackpoint D2 - Rev.0E DD30092021"
1-4703,SI20TPM13A2-5,"TECHNICAL CLARIFICATION WITH CUSTOMER / DESIGN FOR CONNECTION OF TP-M13A",5121,"HK1003-Rev.0E-3",TT_Task,"55902",-,-,-,100,TK_Complete,11/04/2021,11/04/2021,08/05/2021,08/05/2021,"SI-----1-05 FS,SI--M--2D21 FS","SI-----1-05,SI--M--2D21","SI20TPM13A2-10 FS,SI20TPM13A3-15 FS,SI---2P2A10 FS","SI20TPM13A2-10,SI20TPM13A3-15,SI---2P2A10",36,36,40,40,8,8,9,9,8,,"HK1003 -Blackpoint D2 - Rev.0E DD30092021"
1-4704,SI20TPM13A2-10,"FINAL AGREEMENT WITH CUSTOMER / ACCESS TIME / REQUIREMENTS TO TP ALIGNED TP-M13A",5121,"HK1003-Rev.0E-3",TT_Mile,"55902",-,-,-,0,TK_NotStart,08/04/2022,,08/04/2022,,"SI20TPM13A2-5 FS","SI20TPM13A2-5","SI20TPM13A6-20 FS,SI20TPM13A2-11 FS","SI20TPM13A6-20,SI20TPM13A2-11",87,,87,,20,,20,,57,2080,"HK1003 -Blackpoint D2 - Rev.0E DD30092021"
1-4705,SI20TPM13A6-20,"INSTALLATION OF CONNECTION MATERIAL IN CUSTOMER SITE TP-M13A",5121,"HK1003-Rev.0E-3",TT_Task,"55902",-,-,-,0,TK_NotStart,01/07/2022,,22/09/2022,,"SI20TPM13A2-10 FS,SI20TPM13A3-15 FS,SI20TPM13A2-11 FS,SI20TP-133& FS,SI20UVM6B5 SS","SI20TPM13A2-10,SI20TPM13A3-15,SI20TPM13A2-11,SI20TP-133&,SI20UVM6B5","SI20TPM13A6-25 FS,SI20TPM13A2-16 FS","SI20TPM13A6-25,SI20TPM13A2-16",99,,111,,23,,26,,72,2080,"HK1003 -Blackpoint D2 - Rev.0E DD30092021"
1-4706,SI20TPM13A2-11,"UPDATE OF TRANSITION PLAN TP-M13A",5121,"HK1003-Rev.0E-3",TT_Task,"55902",-,-,-,0,TK_NotStart,08/04/2022,,14/04/2022,,"SI20TPM13A2-10 FS","SI20TPM13A2-10","SI20TPM13A6-20 FS","SI20TPM13A6-20",87,,88,,20,,20,,57,2080,"HK1003 -Blackpoint D2 - Rev.0E DD30092021"
1-4707,SI20TPM13A2-16,"ALL RELEVANT PERMITS & LOTO AVAILABLE FROM CUSTOMER TP-M13A",5121,"HK1003-Rev.0E-3",TT_Mile,"55902",-,-,-,0,TK_NotStart,23/09/2022,,23/09/2022,,"SI20TPM13A6-20 FS","SI20TPM13A6-20","SI20TPM13A6-25 FS","SI20TPM13A6-25",111,,111,,26,,26,,81,2080,"HK1003 -Blackpoint D2 - Rev.0E DD30092021"
1-4708,SI20TPM13A8-26,"MEDIA  AVAILABLE TP-M13A",5121,"HK1003-Rev.0E-3",TT_Mile,"55902",-,-,-,0,TK_NotStart,16/06/2023,,16/06/2023,,"SI20TPM13A6-25 FS","SI20TPM13A6-25","SI20TPM13A8-30 FS","SI20TPM13A8-30",149,,149,,34,,34,,98,64,"HK1003 -Blackpoint D2 - Rev.0E DD30092021"
1-4709,SI20TPM13B8-30,"COMMISSIONING OF TP-M13B",5121,"HK1003-Rev.0E-3",TT_Task,"55902",-,-,-,0,TK_NotStart,16/06/2023,,22/06/2023,,"SI20TPM13B6-25 FS,SI20TPM13B8-26 FS,SI20HSJ8-11 FS","SI20TPM13B6-25,SI20TPM13B8-26,SI20HSJ8-11","SI20MB-9-15 FS,SI20HSJ8-26 FF","SI20MB-9-15,SI20HSJ8-26",149,,150,,34,,35,,98,64,"HK1003 -Blackpoint D2 - Rev.0E DD30092021"
1-4710,SI20TPM13B3-15,"MATERIAL FOR TP INTEGRATION ON SITE TP-M13B",5121,"HK1003-Rev.0E-3",TT_Mile,"55902",-,-,-,0,TK_NotStart,01/07/2022,,01/07/2022,,"SI20TPM13B2-5 FS","SI20TPM13B2-5","SI20TPM13B6-25 FS,SI20TPM13B6-20 FS","SI20TPM13B6-25,SI20TPM13B6-20",99,,99,,23,,23,,72,2080,"HK1003 -Blackpoint D2 - Rev.0E DD30092021"
1-4711,SI20TPM13B6-25,"TERMINATION OF TP-M13B",5121,"HK1003-Rev.0E-3",TT_Task,"55902",-,-,-,0,TK_NotStart,23/09/2022,,06/10/2022,,"SI20TPM13B3-15 FS,SI20TPM13B6-20 FS,SI20TPM13B2-16 FS","SI20TPM13B3-15,SI20TPM13B6-20,SI20TPM13B2-16","SI20TPM13B8-30 FS,SI20TPM13B8-26 FS","SI20TPM13B8-30,SI20TPM13B8-26",111,,113,,26,,26,,81,2080,"HK1003 -Blackpoint D2 - Rev.0E DD30092021"
1-4712,SI20TPM13B2-5,"TECHNICAL CLARIFICATION WITH CUSTOMER / DESIGN FOR CONNECTION OF TP-M13B",5121,"HK1003-Rev.0E-3",TT_Task,"55902",-,-,-,100,TK_Complete,11/04/2021,11/04/2021,08/05/2021,08/05/2021,"SI-----1-05 FS,SI--M--2D21 FS","SI-----1-05,SI--M--2D21","SI20TPM13B2-10 FS,SI20TPM13B3-15 FS,SI---2P2A10 FS","SI20TPM13B2-10,SI20TPM13B3-15,SI---2P2A10",36,36,40,40,8,8,9,9,8,,"HK1003 -Blackpoint D2 - Rev.0E DD30092021"
1-4713,SI20TPM13B2-10,"FINAL AGREEMENT WITH CUSTOMER / ACCESS TIME / REQUIREMENTS TO TP ALIGNED TP-M13B",5121,"HK1003-Rev.0E-3",TT_Mile,"55902",-,-,-,0,TK_NotStart,08/04/2022,,08/04/2022,,"SI20TPM13B2-5 FS","SI20TPM13B2-5","SI20TPM13B6-20 FS,SI20TPM13B2-11 FS","SI20TPM13B6-20,SI20TPM13B2-11",87,,87,,20,,20,,57,2080,"HK1003 -Blackpoint D2 - Rev.0E DD30092021"
1-4714,SI20TPM13B6-20,"INSTALLATION OF CONNECTION MATERIAL IN CUSTOMER SITE TP-M13B",5121,"HK1003-Rev.0E-3",TT_Task,"55902",-,-,-,0,TK_NotStart,01/07/2022,,22/09/2022,,"SI20TPM13B2-10 FS,SI20TPM13B3-15 FS,SI20TPM13B2-11 FS,SI20TP-134& FS,SI20UVM6B5 SS","SI20TPM13B2-10,SI20TPM13B3-15,SI20TPM13B2-11,SI20TP-134&,SI20UVM6B5","SI20TPM13B6-25 FS,SI20TPM13B2-16 FS","SI20TPM13B6-25,SI20TPM13B2-16",99,,111,,23,,26,,72,2080,"HK1003 -Blackpoint D2 - Rev.0E DD30092021"
1-4715,SI20TPM13B2-11,"UPDATE OF TRANSITION PLAN TP-M13B",5121,"HK1003-Rev.0E-3",TT_Task,"55902",-,-,-,0,TK_NotStart,08/04/2022,,14/04/2022,,"SI20TPM13B2-10 FS","SI20TPM13B2-10","SI20TPM13B6-20 FS","SI20TPM13B6-20",87,,88,,20,,20,,57,2080,"HK1003 -Blackpoint D2 - Rev.0E DD30092021"
1-4716,SI20TPM13B2-16,"ALL RELEVANT PERMITS & LOTO AVAILABLE FROM CUSTOMER TP-M13B",5121,"HK1003-Rev.0E-3",TT_Mile,"55902",-,-,-,0,TK_NotStart,23/09/2022,,23/09/2022,,"SI20TPM13B6-20 FS","SI20TPM13B6-20","SI20TPM13B6-25 FS","SI20TPM13B6-25",111,,111,,26,,26,,81,2080,"HK1003 -Blackpoint D2 - Rev.0E DD30092021"
1-4717,SI20TPM13B8-26,"MEDIA  AVAILABLE TP-M13B",5121,"HK1003-Rev.0E-3",TT_Mile,"55902",-,-,-,0,TK_NotStart,16/06/2023,,16/06/2023,,"SI20TPM13B6-25 FS","SI20TPM13B6-25","SI20TPM13B8-30 FS","SI20TPM13B8-30",149,,149,,34,,34,,98,64,"HK1003 -Blackpoint D2 - Rev.0E DD30092021"
1-4718,SI20---4M28,"LOGISTICS AND CUSTOMS PREPARATION LOOSE STEEL FOR MODULES LOT 2 (20UMCL1Y/20UMCM1Y)",5121,"HK1003-Rev.0E-3",TT_Task,"55902",-,-,-,0,TK_NotStart,05/02/2022,,04/03/2022,,"SI20---3M117 FS","SI20---3M117","SI20---3M118 FS","SI20---3M118",79,,82,,18,,19,,48,240,"HK1003 -Blackpoint D2 - Rev.0E DD30092021"
1-4719,SI20---3M117,"TIMES OF COMPLETION (FINAL DATA IN KANLOG) LOOSE STEEL FOR MODULES LOT 2 (20UMCL1Y/20UMCM1Y)",5121,"HK1003-Rev.0E-3",TT_FinMile,"55902",-,-,-,0,TK_NotStart,04/02/2022,,04/02/2022,,"SI20---3B44 FS","SI20---3B44","SI20---4M28 FS,SI20---3M71 FS","SI20---4M28,SI20---3M71",78,,78,,18,,18,,48,240,"HK1003 -Blackpoint D2 - Rev.0E DD30092021"
1-4720,SI20---4M30,"LOGISTICS AND CUSTOMS PREPARATION LOOSE STEEL FOR MODULES LOT 1 (20UMY00Y/20ULY00Y)",5121,"HK1003-Rev.0E-3",TT_Task,"55902",-,-,-,0,TK_NotStart,06/01/2022,,02/02/2022,,"SI20---3M119 FS","SI20---3M119","SI20---3M120 FS","SI20---3M120",74,,78,,17,,18,,44,200,"HK1003 -Blackpoint D2 - Rev.0E DD30092021"
1-4721,SI20---3M119,"TIMES OF COMPLETION (FINAL DATA IN KANLOG) LOOSE STEEL FOR MODULES LOT 1 (20UMY00Y/20ULY00Y)",5121,"HK1003-Rev.0E-3",TT_FinMile,"55902",-,-,-,0,TK_NotStart,05/01/2022,,05/01/2022,,"SI20-1P340 FS","SI20-1P340","SI20---4M30 FS","SI20---4M30",74,,74,,17,,17,,44,200,"HK1003 -Blackpoint D2 - Rev.0E DD30092021"
1-4722,SI20---4M32,"LOGISTICS AND CUSTOMS PREPARATION LOOSE STEEL FOR MODULES LOT 3 (20UEY1Y/20UEY02Y)",5121,"HK1003-Rev.0E-3",TT_Task,"55902",-,-,-,0,TK_NotStart,08/03/2022,,04/04/2022,,"SI20---3M121 FS","SI20---3M121","SI20---3M122 FS","SI20---3M122",83,,87,,19,,20,,52,1160,"HK1003 -Blackpoint D2 - Rev.0E DD30092021"
1-4723,SI20---3M121,"TIMES OF COMPLETION (FINAL DATA IN KANLOG) LOOSE STEEL FOR MODULES LOT 3 (20UEY1Y/20UEY02Y)",5121,"HK1003-Rev.0E-3",TT_FinMile,"55902",-,-,-,0,TK_NotStart,07/03/2022,,07/03/2022,,"SI20---3B51 FS","SI20---3B51","SI20---4M32 FS","SI20---4M32",83,,83,,19,,19,,52,1160,"HK1003 -Blackpoint D2 - Rev.0E DD30092021"
1-4724,SI--URA2-90,"CLIENT - REVIEW - DETAIL DESIGN CONCRETE SUPERSTRUCTURE 20URA-To be used/cancel xx",5121,"HK1003-Rev.0E-3",TT_Task,"55902",-,-,-,100,TK_Complete,25/06/2021,25/06/2021,19/07/2021,19/07/2021,"","","","",46,46,50,50,10,10,11,11,19,,"HK1003 -Blackpoint D2 - Rev.0E DD30092021"
1-4725,SI--URA2-91,"START ON SITE SUPERSTRUCTURE-20URA/URD",5121,"HK1003-Rev.0E-3",TT_FinMile,"55902",-,-,-,0,TK_NotStart,01/01/2022,,01/01/2022,,"SI--URA2-89 FS,SI20PUR2J94 FF,SI--URA2-98 FS","SI--URA2-89,SI20PUR2J94,SI--URA2-98","SI20URA5-52 FS,SI20URA5-54 FS","SI20URA5-52,SI20URA5-54",74,,74,,17,,17,,44,72,"HK1003 -Blackpoint D2 - Rev.0E DD30092021"
1-4726,SI20TPM14A8-30,"COMMISSIONING OF TP-M14A",5121,"HK1003-Rev.0E-3",TT_Task,"55902",-,-,-,0,TK_NotStart,16/06/2023,,22/06/2023,,"SI20TPM14A6-25 FS,SI20TPM14A8-26 FS,SI20HSJ8-11 FS","SI20TPM14A6-25,SI20TPM14A8-26,SI20HSJ8-11","SI20MB-9-15 FS,SI20HSJ8-26 FF","SI20MB-9-15,SI20HSJ8-26",149,,150,,34,,35,,98,64,"HK1003 -Blackpoint D2 - Rev.0E DD30092021"
1-4727,SI20TPM14A3-15,"MATERIAL FOR TP INTEGRATION ON SITE TP-M14A",5121,"HK1003-Rev.0E-3",TT_Mile,"55902",-,-,-,0,TK_NotStart,01/07/2022,,01/07/2022,,"SI20TPM14A2-5 FS","SI20TPM14A2-5","SI20TPM14A6-25 FS,SI20TPM14A6-20 FS","SI20TPM14A6-25,SI20TPM14A6-20",99,,99,,23,,23,,72,2080,"HK1003 -Blackpoint D2 - Rev.0E DD30092021"
1-4728,SI20TPM14A6-25,"TERMINATION OF TP-M14A",5121,"HK1003-Rev.0E-3",TT_Task,"55902",-,-,-,0,TK_NotStart,23/09/2022,,06/10/2022,,"SI20TPM14A3-15 FS,SI20TPM14A6-20 FS,SI20TPM14A2-16 FS","SI20TPM14A3-15,SI20TPM14A6-20,SI20TPM14A2-16","SI20TPM14A8-30 FS,SI20TPM14A8-26 FS","SI20TPM14A8-30,SI20TPM14A8-26",111,,113,,26,,26,,81,2080,"HK1003 -Blackpoint D2 - Rev.0E DD30092021"
1-4729,SI20TPM14A2-5,"TECHNICAL CLARIFICATION WITH CUSTOMER / DESIGN FOR CONNECTION OF TP-M14A",5121,"HK1003-Rev.0E-3",TT_Task,"55902",-,-,-,100,TK_Complete,11/04/2021,11/04/2021,08/05/2021,08/05/2021,"SI-----1-05 FS,SI--M--2D21 FS","SI-----1-05,SI--M--2D21","SI20TPM14A2-10 FS,SI20TPM14A3-15 FS,SI---2P2A10 FS","SI20TPM14A2-10,SI20TPM14A3-15,SI---2P2A10",36,36,40,40,8,8,9,9,8,,"HK1003 -Blackpoint D2 - Rev.0E DD30092021"
1-4730,SI20TPM14A2-10,"FINAL AGREEMENT WITH CUSTOMER / ACCESS TIME / REQUIREMENTS TO TP ALIGNED TP-M14A",5121,"HK1003-Rev.0E-3",TT_Mile,"55902",-,-,-,0,TK_NotStart,08/04/2022,,08/04/2022,,"SI20TPM14A2-5 FS","SI20TPM14A2-5","SI20TPM14A6-20 FS,SI20TPM14A2-11 FS","SI20TPM14A6-20,SI20TPM14A2-11",87,,87,,20,,20,,57,2080,"HK1003 -Blackpoint D2 - Rev.0E DD30092021"
1-4731,SI20TPM14A6-20,"INSTALLATION OF CONNECTION MATERIAL IN CUSTOMER SITE TP-M14A",5121,"HK1003-Rev.0E-3",TT_Task,"55902",-,-,-,0,TK_NotStart,01/07/2022,,22/09/2022,,"SI20TPM14A2-10 FS,SI20TPM14A3-15 FS,SI20TPM14A2-11 FS,SI20TP-135& FS,SI20UVM6B5 SS","SI20TPM14A2-10,SI20TPM14A3-15,SI20TPM14A2-11,SI20TP-135&,SI20UVM6B5","SI20TPM14A6-25 FS,SI20TPM14A2-16 FS","SI20TPM14A6-25,SI20TPM14A2-16",99,,111,,23,,26,,72,2080,"HK1003 -Blackpoint D2 - Rev.0E DD30092021"
1-4732,SI20TPM14A2-11,"UPDATE OF TRANSITION PLAN TP-M14A",5121,"HK1003-Rev.0E-3",TT_Task,"55902",-,-,-,0,TK_NotStart,08/04/2022,,14/04/2022,,"SI20TPM14A2-10 FS","SI20TPM14A2-10","SI20TPM14A6-20 FS","SI20TPM14A6-20",87,,88,,20,,20,,57,2080,"HK1003 -Blackpoint D2 - Rev.0E DD30092021"
1-4733,SI20TPM14A2-16,"ALL RELEVANT PERMITS & LOTO AVAILABLE FROM CUSTOMER TP-M14A",5121,"HK1003-Rev.0E-3",TT_Mile,"55902",-,-,-,0,TK_NotStart,23/09/2022,,23/09/2022,,"SI20TPM14A6-20 FS","SI20TPM14A6-20","SI20TPM14A6-25 FS","SI20TPM14A6-25",111,,111,,26,,26,,81,2080,"HK1003 -Blackpoint D2 - Rev.0E DD30092021"
1-4734,SI20TPM14A8-26,"MEDIA  AVAILABLE TP-M14A",5121,"HK1003-Rev.0E-3",TT_Mile,"55902",-,-,-,0,TK_NotStart,16/06/2023,,16/06/2023,,"SI20TPM14A6-25 FS","SI20TPM14A6-25","SI20TPM14A8-30 FS","SI20TPM14A8-30",149,,149,,34,,34,,98,64,"HK1003 -Blackpoint D2 - Rev.0E DD30092021"
1-4735,SI20TPM14B8-30,"COMMISSIONING OF TP-M14B",5121,"HK1003-Rev.0E-3",TT_Task,"55902",-,-,-,0,TK_NotStart,16/06/2023,,22/06/2023,,"SI20TPM14B6-25 FS,SI20TPM14B8-26 FS,SI20HSJ8-11 FS","SI20TPM14B6-25,SI20TPM14B8-26,SI20HSJ8-11","SI20MB-9-15 FS,SI20HSJ8-26 FF","SI20MB-9-15,SI20HSJ8-26",149,,150,,34,,35,,98,64,"HK1003 -Blackpoint D2 - Rev.0E DD30092021"
1-4736,SI20TPM14B3-15,"MATERIAL FOR TP INTEGRATION ON SITE TP-M14B",5121,"HK1003-Rev.0E-3",TT_Mile,"55902",-,-,-,0,TK_NotStart,01/07/2022,,01/07/2022,,"SI20TPM14B2-5 FS","SI20TPM14B2-5","SI20TPM14B6-25 FS,SI20TPM14B6-20 FS","SI20TPM14B6-25,SI20TPM14B6-20",99,,99,,23,,23,,72,2080,"HK1003 -Blackpoint D2 - Rev.0E DD30092021"
1-4737,SI20TPM14B6-25,"TERMINATION OF TP-M14B",5121,"HK1003-Rev.0E-3",TT_Task,"55902",-,-,-,0,TK_NotStart,23/09/2022,,06/10/2022,,"SI20TPM14B3-15 FS,SI20TPM14B6-20 FS,SI20TPM14B2-16 FS","SI20TPM14B3-15,SI20TPM14B6-20,SI20TPM14B2-16","SI20TPM14B8-30 FS,SI20TPM14B8-26 FS","SI20TPM14B8-30,SI20TPM14B8-26",111,,113,,26,,26,,81,2080,"HK1003 -Blackpoint D2 - Rev.0E DD30092021"
1-4738,SI20TPM14B2-5,"TECHNICAL CLARIFICATION WITH CUSTOMER / DESIGN FOR CONNECTION OF TP-M14B",5121,"HK1003-Rev.0E-3",TT_Task,"55902",-,-,-,100,TK_Complete,11/04/2021,11/04/2021,08/05/2021,08/05/2021,"SI-----1-05 FS,SI--M--2D21 FS","SI-----1-05,SI--M--2D21","SI20TPM14B2-10 FS,SI20TPM14B3-15 FS,SI---2P2A10 FS","SI20TPM14B2-10,SI20TPM14B3-15,SI---2P2A10",36,36,40,40,8,8,9,9,8,,"HK1003 -Blackpoint D2 - Rev.0E DD30092021"
1-4739,SI20TPM14B2-10,"FINAL AGREEMENT WITH CUSTOMER / ACCESS TIME / REQUIREMENTS TO TP ALIGNED TP-M14B",5121,"HK1003-Rev.0E-3",TT_Mile,"55902",-,-,-,0,TK_NotStart,08/04/2022,,08/04/2022,,"SI20TPM14B2-5 FS","SI20TPM14B2-5","SI20TPM14B6-20 FS,SI20TPM14B2-11 FS","SI20TPM14B6-20,SI20TPM14B2-11",87,,87,,20,,20,,57,2696,"HK1003 -Blackpoint D2 - Rev.0E DD30092021"
1-4740,SI20TPM14B6-20,"INSTALLATION OF CONNECTION MATERIAL IN CUSTOMER SITE TP-M14B",5121,"HK1003-Rev.0E-3",TT_Task,"55902",-,-,-,0,TK_NotStart,01/07/2022,,22/09/2022,,"SI20TPM14B2-10 FS,SI20TPM14B3-15 FS,SI20TPM14B2-11 FS,SI20SD-110& FS,SI20TP-136& FS,SI20UVM6B5 SS","SI20TPM14B2-10,SI20TPM14B3-15,SI20TPM14B2-11,SI20SD-110&,SI20TP-136&,SI20UVM6B5","SI20TPM14B6-25 FS,SI20TPM14B2-16 FS","SI20TPM14B6-25,SI20TPM14B2-16",99,,111,,23,,26,,72,2080,"HK1003 -Blackpoint D2 - Rev.0E DD30092021"
1-4741,SI20TPM14B2-11,"UPDATE OF TRANSITION PLAN TP-M14B",5121,"HK1003-Rev.0E-3",TT_Task,"55902",-,-,-,0,TK_NotStart,08/04/2022,,14/04/2022,,"SI20TPM14B2-10 FS","SI20TPM14B2-10","SI20TPM14B6-20 FS","SI20TPM14B6-20",87,,88,,20,,20,,57,2696,"HK1003 -Blackpoint D2 - Rev.0E DD30092021"
1-4742,SI20TPM14B2-16,"ALL RELEVANT PERMITS & LOTO AVAILABLE FROM CUSTOMER TP-M14B",5121,"HK1003-Rev.0E-3",TT_Mile,"55902",-,-,-,0,TK_NotStart,23/09/2022,,23/09/2022,,"SI20TPM14B6-20 FS","SI20TPM14B6-20","SI20TPM14B6-25 FS","SI20TPM14B6-25",111,,111,,26,,26,,81,2080,"HK1003 -Blackpoint D2 - Rev.0E DD30092021"
1-4743,SI20TPM14B8-26,"MEDIA  AVAILABLE TP-M14B",5121,"HK1003-Rev.0E-3",TT_Mile,"55902",-,-,-,0,TK_NotStart,16/06/2023,,16/06/2023,,"SI20TPM14B6-25 FS","SI20TPM14B6-25","SI20TPM14B8-30 FS","SI20TPM14B8-30",149,,149,,34,,34,,98,64,"HK1003 -Blackpoint D2 - Rev.0E DD30092021"
1-4744,SI20TPM15A8-30,"COMMISSIONING OF TP-M15A",5121,"HK1003-Rev.0E-3",TT_Task,"55902",-,-,-,0,TK_NotStart,20/05/2023,,26/05/2023,,"SI20TPM15A6-25 FS,SI20TPM15A8-26 FS","SI20TPM15A6-25,SI20TPM15A8-26","SI20PAD8-45 FS,SI20PAD8-55 SS","SI20PAD8-45,SI20PAD8-55",146,,146,,34,,34,,97,56,"HK1003 -Blackpoint D2 - Rev.0E DD30092021"
1-4745,SI20TPM15A3-15,"MATERIAL FOR TP INTEGRATION ON SITE TP-M15A",5121,"HK1003-Rev.0E-3",TT_Mile,"55902",-,-,-,0,TK_NotStart,01/02/2022,,01/02/2022,,"SI20TPM15A2-5 FS","SI20TPM15A2-5","SI20TPM15A6-25 FS,SI20TPM15A6-20 FS","SI20TPM15A6-25,SI20TPM15A6-20",78,,78,,18,,18,,47,3384,"HK1003 -Blackpoint D2 - Rev.0E DD30092021"
1-4746,SI20TPM15A6-25,"TERMINATION OF TP-M15A",5121,"HK1003-Rev.0E-3",TT_Task,"55902",-,-,-,0,TK_NotStart,16/03/2022,,29/03/2022,,"SI20TPM15A3-15 FS,SI20TPM15A6-20 FS,SI20TPM15A2-16 FS","SI20TPM15A3-15,SI20TPM15A6-20,SI20TPM15A2-16","SI20TPM15A8-30 FS,SI20TPM15A8-26 FS","SI20TPM15A8-30,SI20TPM15A8-26",84,,86,,19,,20,,53,3384,"HK1003 -Blackpoint D2 - Rev.0E DD30092021"
1-4747,SI20TPM15A2-5,"TECHNICAL CLARIFICATION WITH CUSTOMER / DESIGN FOR CONNECTION OF TP-M15A",5121,"HK1003-Rev.0E-3",TT_Task,"55902",-,-,-,100,TK_Complete,11/04/2021,11/04/2021,08/05/2021,08/05/2021,"SI-----1-05 FS,SI--M--2D21 FS","SI-----1-05,SI--M--2D21","SI20TPM15A2-10 FS,SI20TPM15A3-15 FS,SI---2P2A10 FS","SI20TPM15A2-10,SI20TPM15A3-15,SI---2P2A10",36,36,40,40,8,8,9,9,8,,"HK1003 -Blackpoint D2 - Rev.0E DD30092021"
1-4748,SI20TPM15A2-10,"FINAL AGREEMENT WITH CUSTOMER / ACCESS TIME / REQUIREMENTS TO TP ALIGNED TP-M15A",5121,"HK1003-Rev.0E-3",TT_Mile,"55902",-,-,-,0,TK_NotStart,25/01/2022,,25/01/2022,,"SI20TPM15A2-5 FS","SI20TPM15A2-5","SI20TPM15A6-20 FS,SI20TPM15A2-11 FS","SI20TPM15A6-20,SI20TPM15A2-11",77,,77,,18,,18,,46,3384,"HK1003 -Blackpoint D2 - Rev.0E DD30092021"
1-4749,SI20TPM15A6-20,"INSTALLATION OF CONNECTION MATERIAL IN CUSTOMER SITE TP-M15A",5121,"HK1003-Rev.0E-3",TT_Task,"55902",-,-,-,0,TK_NotStart,01/02/2022,,15/03/2022,,"SI20TPM15A2-10 FS,SI20TPM15A3-15 FS,SI20TPM15A2-11 FS,SI20SD-120& SS,SI20TP-140& FS","SI20TPM15A2-10,SI20TPM15A3-15,SI20TPM15A2-11,SI20SD-120&,SI20TP-140&","SI20TPM15A6-25 FS,SI20TPM15A2-16 FS","SI20TPM15A6-25,SI20TPM15A2-16",78,,84,,18,,19,,47,3384,"HK1003 -Blackpoint D2 - Rev.0E DD30092021"
1-4750,SI20TPM15A2-11,"UPDATE OF TRANSITION PLAN TP-M15A",5121,"HK1003-Rev.0E-3",TT_Task,"55902",-,-,-,0,TK_NotStart,25/01/2022,,31/01/2022,,"SI20TPM15A2-10 FS","SI20TPM15A2-10","SI20TPM15A6-20 FS","SI20TPM15A6-20",77,,78,,18,,18,,46,3384,"HK1003 -Blackpoint D2 - Rev.0E DD30092021"
1-4751,SI20TPM15A2-16,"ALL RELEVANT PERMITS & LOTO AVAILABLE FROM CUSTOMER TP-M15A",5121,"HK1003-Rev.0E-3",TT_Mile,"55902",-,-,-,0,TK_NotStart,16/03/2022,,16/03/2022,,"SI20TPM15A6-20 FS","SI20TPM15A6-20","SI20TPM15A6-25 FS","SI20TPM15A6-25",84,,84,,19,,19,,53,3384,"HK1003 -Blackpoint D2 - Rev.0E DD30092021"
1-4752,SI20TPM15A8-26,"MEDIA  AVAILABLE TP-M15A",5121,"HK1003-Rev.0E-3",TT_Mile,"55902",-,-,-,0,TK_NotStart,20/05/2023,,20/05/2023,,"SI20TPM15A6-25 FS","SI20TPM15A6-25","SI20TPM15A8-30 FS","SI20TPM15A8-30",146,,146,,34,,34,,97,56,"HK1003 -Blackpoint D2 - Rev.0E DD30092021"
1-4753,SI20TPM16A8-30,"COMMISSIONING OF TP-M16A",5121,"HK1003-Rev.0E-3",TT_Task,"55902",-,-,-,0,TK_NotStart,20/05/2023,,26/05/2023,,"SI20TPM16A6-25 FS,SI20TPM16A8-26 FS","SI20TPM16A6-25,SI20TPM16A8-26","SI20PAD8-45 FS,SI20PAD8-55 SS","SI20PAD8-45,SI20PAD8-55",146,,146,,34,,34,,97,56,"HK1003 -Blackpoint D2 - Rev.0E DD30092021"
1-4754,SI20TPM16A3-15,"MATERIAL FOR TP INTEGRATION ON SITE TP-M16A",5121,"HK1003-Rev.0E-3",TT_Mile,"55902",-,-,-,0,TK_NotStart,01/02/2022,,01/02/2022,,"SI20TPM16A2-5 FS","SI20TPM16A2-5","SI20TPM16A6-25 FS,SI20TPM16A6-20 FS","SI20TPM16A6-25,SI20TPM16A6-20",78,,78,,18,,18,,47,3504,"HK1003 -Blackpoint D2 - Rev.0E DD30092021"
1-4755,SI20TPM16A6-25,"TERMINATION OF TP-M16A",5121,"HK1003-Rev.0E-3",TT_Task,"55902",-,-,-,0,TK_NotStart,13/05/2022,,26/05/2022,,"SI20TPM16A3-15 FS,SI20TPM16A6-20 FS,SI20TPM16A2-16 FS","SI20TPM16A3-15,SI20TPM16A6-20,SI20TPM16A2-16","SI20TPM16A8-30 FS,SI20TPM16A8-26 FS","SI20TPM16A8-30,SI20TPM16A8-26",92,,94,,21,,22,,64,2920,"HK1003 -Blackpoint D2 - Rev.0E DD30092021"
1-4756,SI20TPM16A2-5,"TECHNICAL CLARIFICATION WITH CUSTOMER / DESIGN FOR CONNECTION OF TP-M16A",5121,"HK1003-Rev.0E-3",TT_Task,"55902",-,-,-,100,TK_Complete,11/04/2021,11/04/2021,08/05/2021,08/05/2021,"SI-----1-05 FS,SI--M--2D21 FS","SI-----1-05,SI--M--2D21","SI20TPM16A2-10 FS,SI20TPM16A3-15 FS,SI---2P2A10 FS","SI20TPM16A2-10,SI20TPM16A3-15,SI---2P2A10",36,36,40,40,8,8,9,9,8,,"HK1003 -Blackpoint D2 - Rev.0E DD30092021"
1-4757,SI20TPM16A2-10,"FINAL AGREEMENT WITH CUSTOMER / ACCESS TIME / REQUIREMENTS TO TP ALIGNED TP-M16A",5121,"HK1003-Rev.0E-3",TT_Mile,"55902",-,-,-,0,TK_NotStart,08/04/2022,,08/04/2022,,"SI20TPM16A2-5 FS","SI20TPM16A2-5","SI20TPM16A6-20 FS,SI20TPM16A2-11 FS","SI20TPM16A6-20,SI20TPM16A2-11",87,,87,,20,,20,,57,2920,"HK1003 -Blackpoint D2 - Rev.0E DD30092021"
1-4758,SI20TPM16A6-20,"INSTALLATION OF CONNECTION MATERIAL IN CUSTOMER SITE TP-M16A",5121,"HK1003-Rev.0E-3",TT_Task,"55902",-,-,-,0,TK_NotStart,15/04/2022,,12/05/2022,,"SI20TPM16A2-10 FS,SI20TPM16A3-15 FS,SI20TPM16A2-11 FS,SI20TP-166& FS","SI20TPM16A2-10,SI20TPM16A3-15,SI20TPM16A2-11,SI20TP-166&","SI20TPM16A6-25 FS,SI20TPM16A2-16 FS","SI20TPM16A6-25,SI20TPM16A2-16",88,,92,,20,,21,,58,2920,"HK1003 -Blackpoint D2 - Rev.0E DD30092021"
1-4759,SI20TPM16A2-11,"UPDATE OF TRANSITION PLAN TP-M16A",5121,"HK1003-Rev.0E-3",TT_Task,"55902",-,-,-,0,TK_NotStart,08/04/2022,,14/04/2022,,"SI20TPM16A2-10 FS","SI20TPM16A2-10","SI20TPM16A6-20 FS","SI20TPM16A6-20",87,,88,,20,,20,,57,2920,"HK1003 -Blackpoint D2 - Rev.0E DD30092021"
1-4760,SI20TPM16A2-16,"ALL RELEVANT PERMITS & LOTO AVAILABLE FROM CUSTOMER TP-M16A",5121,"HK1003-Rev.0E-3",TT_Mile,"55902",-,-,-,0,TK_NotStart,13/05/2022,,13/05/2022,,"SI20TPM16A6-20 FS","SI20TPM16A6-20","SI20TPM16A6-25 FS","SI20TPM16A6-25",92,,92,,21,,21,,64,2920,"HK1003 -Blackpoint D2 - Rev.0E DD30092021"
1-4761,SI20TPM16A8-26,"MEDIA  AVAILABLE TP-M16A",5121,"HK1003-Rev.0E-3",TT_Mile,"55902",-,-,-,0,TK_NotStart,20/05/2023,,20/05/2023,,"SI20TPM16A6-25 FS","SI20TPM16A6-25","SI20TPM16A8-30 FS","SI20TPM16A8-30",146,,146,,34,,34,,97,56,"HK1003 -Blackpoint D2 - Rev.0E DD30092021"
1-4762,SI20TPM17A8-30,"COMMISSIONING OF TP-M17A",5121,"HK1003-Rev.0E-3",TT_Task,"55902",-,-,-,0,TK_NotStart,16/06/2023,,22/06/2023,,"SI20TPM17A6-25 FS,SI20TPM17A8-26 FS,SI20MBV8-15 FS","SI20TPM17A6-25,SI20TPM17A8-26,SI20MBV8-15","SI20MB-9-15 FS,SI20MBV8-155 FF","SI20MB-9-15,SI20MBV8-155",149,,150,,34,,35,,98,64,"HK1003 -Blackpoint D2 - Rev.0E DD30092021"
1-4763,SI20TPM17A3-15,"MATERIAL FOR TP INTEGRATION ON SITE TP-M17A",5121,"HK1003-Rev.0E-3",TT_Mile,"55902",-,-,-,0,TK_NotStart,30/08/2022,,30/08/2022,,"SI20TPM17A2-5 FS","SI20TPM17A2-5","SI20TPM17A6-25 FS,SI20TPM17A6-20 FS","SI20TPM17A6-25,SI20TPM17A6-20",108,,108,,25,,25,,79,2048,"HK1003 -Blackpoint D2 - Rev.0E DD30092021"
1-4764,SI20TPM17A6-25,"TERMINATION OF TP-M17A",5121,"HK1003-Rev.0E-3",TT_Task,"55902",-,-,-,0,TK_NotStart,27/09/2022,,10/10/2022,,"SI20TPM17A3-15 FS,SI20TPM17A6-20 FS,SI20TPM17A2-16 FS","SI20TPM17A3-15,SI20TPM17A6-20,SI20TPM17A2-16","SI20TPM17A8-30 FS,SI20TPM17A8-26 FS","SI20TPM17A8-30,SI20TPM17A8-26",112,,114,,26,,26,,82,2048,"HK1003 -Blackpoint D2 - Rev.0E DD30092021"
1-4765,SI20TPM17A2-5,"TECHNICAL CLARIFICATION WITH CUSTOMER / DESIGN FOR CONNECTION OF TP-M17A",5121,"HK1003-Rev.0E-3",TT_Task,"55902",-,-,-,100,TK_Complete,11/04/2021,11/04/2021,08/05/2021,08/05/2021,"SI-----1-05 FS,SI--M--2D21 FS","SI-----1-05,SI--M--2D21","SI20TPM17A2-10 FS,SI20TPM17A3-15 FS,SI---2P2A10 FS","SI20TPM17A2-10,SI20TPM17A3-15,SI---2P2A10",36,36,40,40,8,8,9,9,8,,"HK1003 -Blackpoint D2 - Rev.0E DD30092021"
1-4766,SI20TPM17A2-10,"FINAL AGREEMENT WITH CUSTOMER / ACCESS TIME / REQUIREMENTS TO TP ALIGNED TP-M17A",5121,"HK1003-Rev.0E-3",TT_Mile,"55902",-,-,-,0,TK_NotStart,07/06/2022,,07/06/2022,,"SI20TPM17A2-5 FS","SI20TPM17A2-5","SI20TPM17A6-20 FS,SI20TPM17A2-11 FS","SI20TPM17A6-20,SI20TPM17A2-11",96,,96,,22,,22,,69,2664,"HK1003 -Blackpoint D2 - Rev.0E DD30092021"
1-4767,SI20TPM17A6-20,"INSTALLATION OF CONNECTION MATERIAL IN CUSTOMER SITE TP-M17A",5121,"HK1003-Rev.0E-3",TT_Task,"55902",-,-,-,0,TK_NotStart,30/08/2022,,26/09/2022,,"SI20TPM17A2-10 FS,SI20TPM17A3-15 FS,SI20TPM17A2-11 FS,SI20TP-167& FS,SI20UEZ6B-10 SS,SI20MBV6-40 FS","SI20TPM17A2-10,SI20TPM17A3-15,SI20TPM17A2-11,SI20TP-167&,SI20UEZ6B-10,SI20MBV6-40","SI20TPM17A6-25 FS,SI20TPM17A2-16 FS","SI20TPM17A6-25,SI20TPM17A2-16",108,,112,,25,,26,,79,2048,"HK1003 -Blackpoint D2 - Rev.0E DD30092021"
1-4768,SI20TPM17A2-11,"UPDATE OF TRANSITION PLAN TP-M17A",5121,"HK1003-Rev.0E-3",TT_Task,"55902",-,-,-,0,TK_NotStart,07/06/2022,,13/06/2022,,"SI20TPM17A2-10 FS","SI20TPM17A2-10","SI20TPM17A6-20 FS","SI20TPM17A6-20",96,,97,,22,,22,,69,2664,"HK1003 -Blackpoint D2 - Rev.0E DD30092021"
1-4769,SI20TPM17A2-16,"ALL RELEVANT PERMITS & LOTO AVAILABLE FROM CUSTOMER TP-M17A",5121,"HK1003-Rev.0E-3",TT_Mile,"55902",-,-,-,0,TK_NotStart,27/09/2022,,27/09/2022,,"SI20TPM17A6-20 FS","SI20TPM17A6-20","SI20TPM17A6-25 FS","SI20TPM17A6-25",112,,112,,26,,26,,82,2048,"HK1003 -Blackpoint D2 - Rev.0E DD30092021"
1-4770,SI20TPM17A8-26,"MEDIA  AVAILABLE TP-M17A",5121,"HK1003-Rev.0E-3",TT_Mile,"55902",-,-,-,0,TK_NotStart,16/06/2023,,16/06/2023,,"SI20TPM17A6-25 FS","SI20TPM17A6-25","SI20TPM17A8-30 FS","SI20TPM17A8-30",149,,149,,34,,34,,98,64,"HK1003 -Blackpoint D2 - Rev.0E DD30092021"
1-4771,SI20TPM18A8-30,"COMMISSIONING OF TP-M18A",5121,"HK1003-Rev.0E-3",TT_Task,"55902",-,-,-,0,TK_NotStart,16/06/2023,,22/06/2023,,"SI20TPM18A6-25 FS,SI20TPM18A8-26 FS,SI20MBV8-15 FS","SI20TPM18A6-25,SI20TPM18A8-26,SI20MBV8-15","SI20MB-9-15 FS,SI20MBV8-155 FF","SI20MB-9-15,SI20MBV8-155",149,,150,,34,,35,,98,64,"HK1003 -Blackpoint D2 - Rev.0E DD30092021"
1-4772,SI20TPM18A3-15,"MATERIAL FOR TP INTEGRATION ON SITE TP-M18A",5121,"HK1003-Rev.0E-3",TT_Mile,"55902",-,-,-,0,TK_NotStart,30/08/2022,,30/08/2022,,"SI20TPM18A2-5 FS","SI20TPM18A2-5","SI20TPM18A6-25 FS,SI20TPM18A6-20 FS","SI20TPM18A6-25,SI20TPM18A6-20",108,,108,,25,,25,,79,2048,"HK1003 -Blackpoint D2 - Rev.0E DD30092021"
1-4773,SI20TPM18A6-25,"TERMINATION OF TP-M18A",5121,"HK1003-Rev.0E-3",TT_Task,"55902",-,-,-,0,TK_NotStart,27/09/2022,,10/10/2022,,"SI20TPM18A3-15 FS,SI20TPM18A6-20 FS,SI20TPM18A2-16 FS","SI20TPM18A3-15,SI20TPM18A6-20,SI20TPM18A2-16","SI20TPM18A8-30 FS,SI20TPM18A8-26 FS","SI20TPM18A8-30,SI20TPM18A8-26",112,,114,,26,,26,,82,2048,"HK1003 -Blackpoint D2 - Rev.0E DD30092021"
1-4774,SI20TPM18A2-5,"TECHNICAL CLARIFICATION WITH CUSTOMER / DESIGN FOR CONNECTION OF TP-M18A",5121,"HK1003-Rev.0E-3",TT_Task,"55902",-,-,-,100,TK_Complete,11/04/2021,11/04/2021,08/05/2021,08/05/2021,"SI-----1-05 FS,SI--M--2D21 FS","SI-----1-05,SI--M--2D21","SI20TPM18A2-10 FS,SI20TPM18A3-15 FS,SI---2P2A10 FS","SI20TPM18A2-10,SI20TPM18A3-15,SI---2P2A10",36,36,40,40,8,8,9,9,8,,"HK1003 -Blackpoint D2 - Rev.0E DD30092021"
1-4775,SI20TPM18A2-10,"FINAL AGREEMENT WITH CUSTOMER / ACCESS TIME / REQUIREMENTS TO TP ALIGNED TP-M18A",5121,"HK1003-Rev.0E-3",TT_Mile,"55902",-,-,-,0,TK_NotStart,07/06/2022,,07/06/2022,,"SI20TPM18A2-5 FS","SI20TPM18A2-5","SI20TPM18A6-20 FS,SI20TPM18A2-11 FS","SI20TPM18A6-20,SI20TPM18A2-11",96,,96,,22,,22,,69,2048,"HK1003 -Blackpoint D2 - Rev.0E DD30092021"
1-4776,SI20TPM18A6-20,"INSTALLATION OF CONNECTION MATERIAL IN CUSTOMER SITE TP-M18A",5121,"HK1003-Rev.0E-3",TT_Task,"55902",-,-,-,0,TK_NotStart,30/08/2022,,26/09/2022,,"SI20TPM18A2-10 FS,SI20TPM18A3-15 FS,SI20TPM18A2-11 FS,SI20TP-168& FS,SI20UEZ6B-10 SS,SI20MBV6-40 FS","SI20TPM18A2-10,SI20TPM18A3-15,SI20TPM18A2-11,SI20TP-168&,SI20UEZ6B-10,SI20MBV6-40","SI20TPM18A6-25 FS,SI20TPM18A2-16 FS","SI20TPM18A6-25,SI20TPM18A2-16",108,,112,,25,,26,,79,2048,"HK1003 -Blackpoint D2 - Rev.0E DD30092021"
1-4777,SI20TPM18A2-11,"UPDATE OF TRANSITION PLAN TP-M18A",5121,"HK1003-Rev.0E-3",TT_Task,"55902",-,-,-,0,TK_NotStart,07/06/2022,,13/06/2022,,"SI20TPM18A2-10 FS","SI20TPM18A2-10","SI20TPM18A6-20 FS","SI20TPM18A6-20",96,,97,,22,,22,,69,2048,"HK1003 -Blackpoint D2 - Rev.0E DD30092021"
1-4778,SI20TPM18A2-16,"ALL RELEVANT PERMITS & LOTO AVAILABLE FROM CUSTOMER TP-M18A",5121,"HK1003-Rev.0E-3",TT_Mile,"55902",-,-,-,0,TK_NotStart,27/09/2022,,27/09/2022,,"SI20TPM18A6-20 FS","SI20TPM18A6-20","SI20TPM18A6-25 FS","SI20TPM18A6-25",112,,112,,26,,26,,82,2048,"HK1003 -Blackpoint D2 - Rev.0E DD30092021"
1-4779,SI20TPM18A8-26,"MEDIA  AVAILABLE TP-M18A",5121,"HK1003-Rev.0E-3",TT_Mile,"55902",-,-,-,0,TK_NotStart,16/06/2023,,16/06/2023,,"SI20TPM18A6-25 FS","SI20TPM18A6-25","SI20TPM18A8-30 FS","SI20TPM18A8-30",149,,149,,34,,34,,98,64,"HK1003 -Blackpoint D2 - Rev.0E DD30092021"
1-4780,SI20TPM19A8-30,"NOT APPLICABLE - COMMISSIONING OF TP-M19A",5121,"HK1003-Rev.0E-3",TT_Task,"55902",-,-,-,0,TK_NotStart,06/05/2023,,12/05/2023,,"SI20TPM19A6-25 FS,SI20TPM19A8-26 FS,SI20LD8B110 FS,SI20LDK8B10 FS","SI20TPM19A6-25,SI20TPM19A8-26,SI20LD8B110,SI20LDK8B10","SI20--P6-75 FS","SI20--P6-75",144,,144,,33,,33,,96,0,"HK1003 -Blackpoint D2 - Rev.0E DD30092021"
1-4781,SI20TPM19A3-15,"NOT APPLICABLE - MATERIAL FOR TP INTEGRATION ON SITE TP-M19A",5121,"HK1003-Rev.0E-3",TT_Mile,"55902",-,-,-,0,TK_NotStart,04/05/2022,,04/05/2022,,"SI20TPM19A2-5 FS","SI20TPM19A2-5","SI20TPM19A6-25 FS,SI20TPM19A6-20 FS","SI20TPM19A6-25,SI20TPM19A6-20",91,,91,,21,,21,,62,2600,"HK1003 -Blackpoint D2 - Rev.0E DD30092021"
1-4782,SI20TPM19A6-25,"NOT APPLICABLE - TERMINATION OF TP-M19A",5121,"HK1003-Rev.0E-3",TT_Task,"55902",-,-,-,0,TK_NotStart,01/06/2022,,14/06/2022,,"SI20TPM19A3-15 FS,SI20TPM19A6-20 FS,SI20TPM19A2-16 FS","SI20TPM19A3-15,SI20TPM19A6-20,SI20TPM19A2-16","SI20TPM19A8-30 FS,SI20TPM19A8-26 FS","SI20TPM19A8-30,SI20TPM19A8-26",95,,97,,22,,22,,67,2600,"HK1003 -Blackpoint D2 - Rev.0E DD30092021"
1-4783,SI20TPM19A2-5,"NOT APPLICABLE -  TECHNICAL CLARIFICATION WITH CUSTOMER / DESIGN FOR CONNECTION OF TP-M19A",5121,"HK1003-Rev.0E-3",TT_Task,"55902",-,-,-,100,TK_Complete,11/04/2021,11/04/2021,08/05/2021,08/05/2021,"SI-----1-05 FS,SI--M--2D21 FS","SI-----1-05,SI--M--2D21","SI20TPM19A2-10 FS,SI20TPM19A3-15 FS,SI---2P2A10 FS","SI20TPM19A2-10,SI20TPM19A3-15,SI---2P2A10",36,36,40,40,8,8,9,9,8,,"HK1003 -Blackpoint D2 - Rev.0E DD30092021"
1-4784,SI20TPM19A2-10,"NOT APPLICABLE - FINAL AGREEMENT WITH CUSTOMER / ACCESS TIME / REQUIREMENTS TO TP ALIGNED TP-M19A",5121,"HK1003-Rev.0E-3",TT_Mile,"55902",-,-,-,0,TK_NotStart,09/02/2022,,09/02/2022,,"SI20TPM19A2-5 FS","SI20TPM19A2-5","SI20TPM19A6-20 FS,SI20TPM19A2-11 FS","SI20TPM19A6-20,SI20TPM19A2-11",79,,79,,18,,18,,48,2600,"HK1003 -Blackpoint D2 - Rev.0E DD30092021"
1-4785,SI20TPM19A6-20,"NOT APPLICABLE - INSTALLATION OF CONNECTION MATERIAL IN CUSTOMER SITE TP-M19A",5121,"HK1003-Rev.0E-3",TT_Task,"55902",-,-,-,0,TK_NotStart,04/05/2022,,31/05/2022,,"SI20TPM19A2-10 FS,SI20TPM19A3-15 FS,SI20TPM19A2-11 FS,SI20TP-169& FS,SI20SD-110& SS","SI20TPM19A2-10,SI20TPM19A3-15,SI20TPM19A2-11,SI20TP-169&,SI20SD-110&","SI20TPM19A6-25 FS,SI20TPM19A2-16 FS","SI20TPM19A6-25,SI20TPM19A2-16",91,,95,,21,,22,,62,2600,"HK1003 -Blackpoint D2 - Rev.0E DD30092021"
1-4786,SI20TPM19A2-11,"NOT APPLICABLE - UPDATE OF TRANSITION PLAN TP-M19A",5121,"HK1003-Rev.0E-3",TT_Task,"55902",-,-,-,0,TK_NotStart,09/02/2022,,15/02/2022,,"SI20TPM19A2-10 FS","SI20TPM19A2-10","SI20TPM19A6-20 FS","SI20TPM19A6-20",79,,80,,18,,18,,48,2600,"HK1003 -Blackpoint D2 - Rev.0E DD30092021"
1-4787,SI20TPM19A2-16,"NOT APPLICABLE - ALL RELEVANT PERMITS & LOTO AVAILABLE FROM CUSTOMER TP-M19A",5121,"HK1003-Rev.0E-3",TT_Mile,"55902",-,-,-,0,TK_NotStart,01/06/2022,,01/06/2022,,"SI20TPM19A6-20 FS","SI20TPM19A6-20","SI20TPM19A6-25 FS","SI20TPM19A6-25",95,,95,,22,,22,,67,2600,"HK1003 -Blackpoint D2 - Rev.0E DD30092021"
1-4788,SI20TPM19A8-26,"NOT APPLICABLE - MEDIA  AVAILABLE TP-M19A",5121,"HK1003-Rev.0E-3",TT_Mile,"55902",-,-,-,0,TK_NotStart,06/05/2023,,06/05/2023,,"SI20TPM19A6-25 FS","SI20TPM19A6-25","SI20TPM19A8-30 FS","SI20TPM19A8-30",144,,144,,33,,33,,96,0,"HK1003 -Blackpoint D2 - Rev.0E DD30092021"
1-4789,SI20TPM20A8-30,"NOT APPLICABLE - COMMISSIONING OF TP-M20A",5121,"HK1003-Rev.0E-3",TT_Task,"55902",-,-,-,0,TK_NotStart,15/04/2023,,21/04/2023,,"SI20TPM20A6-25 FS,SI20TPM20A8-26 FS,SI20LCL8B10 FS","SI20TPM20A6-25,SI20TPM20A8-26,SI20LCL8B10","SI20GM-8E25 FS","SI20GM-8E25",141,,141,,32,,33,,95,48,"HK1003 -Blackpoint D2 - Rev.0E DD30092021"
1-4790,SI20TPM20A3-15,"NOT APPLICABLE - MATERIAL FOR TP INTEGRATION ON SITE TP-M20A",5121,"HK1003-Rev.0E-3",TT_Mile,"55902",-,-,-,0,TK_NotStart,25/07/2022,,25/07/2022,,"SI20TPM20A2-5 FS","SI20TPM20A2-5","SI20TPM20A6-25 FS,SI20TPM20A6-20 FS","SI20TPM20A6-25,SI20TPM20A6-20",103,,103,,24,,24,,75,1712,"HK1003 -Blackpoint D2 - Rev.0E DD30092021"
1-4791,SI20TPM20A6-25,"NOT APPLICABLE - TERMINATION OF TP-M20A",5121,"HK1003-Rev.0E-3",TT_Task,"55902",-,-,-,0,TK_NotStart,05/09/2022,,18/09/2022,,"SI20TPM20A3-15 FS,SI20TPM20A6-20 FS,SI20TPM20A2-16 FS","SI20TPM20A3-15,SI20TPM20A6-20,SI20TPM20A2-16","SI20TPM20A8-30 FS,SI20TPM20A8-26 FS","SI20TPM20A8-30,SI20TPM20A8-26",109,,111,,25,,25,,80,1712,"HK1003 -Blackpoint D2 - Rev.0E DD30092021"
1-4792,SI20TPM20A2-5,"NOT APPLICABLE - TECHNICAL CLARIFICATION WITH CUSTOMER / DESIGN FOR CONNECTION OF TP-M20A",5121,"HK1003-Rev.0E-3",TT_Task,"55902",-,-,-,100,TK_Complete,11/04/2021,11/04/2021,08/05/2021,08/05/2021,"SI-----1-05 FS,SI--M--2D21 FS","SI-----1-05,SI--M--2D21","SI20TPM20A2-10 FS,SI20TPM20A3-15 FS,SI---2P2A10 FS","SI20TPM20A2-10,SI20TPM20A3-15,SI---2P2A10",36,36,40,40,8,8,9,9,8,,"HK1003 -Blackpoint D2 - Rev.0E DD30092021"
1-4793,SI20TPM20A2-10,"NOT APPLICABLE - FINAL AGREEMENT WITH CUSTOMER / ACCESS TIME / REQUIREMENTS TO TP ALIGNED TP-M20A",5121,"HK1003-Rev.0E-3",TT_Mile,"55902",-,-,-,0,TK_NotStart,01/05/2022,,01/05/2022,,"SI20TPM20A2-5 FS","SI20TPM20A2-5","SI20TPM20A6-20 FS,SI20TPM20A2-11 FS","SI20TPM20A6-20,SI20TPM20A2-11",91,,91,,21,,21,,61,1720,"HK1003 -Blackpoint D2 - Rev.0E DD30092021"
1-4794,SI20TPM20A6-20,"NOT APPLICABLE - INSTALLATION OF CONNECTION MATERIAL IN CUSTOMER SITE TP-M20A",5121,"HK1003-Rev.0E-3",TT_Task,"55902",-,-,-,0,TK_NotStart,25/07/2022,,04/09/2022,,"SI20TPM20A2-10 FS,SI20TPM20A3-15 FS,SI20TPM20A2-11 FS,SI20TP-170& FS,SI20GM-6H15 SS","SI20TPM20A2-10,SI20TPM20A3-15,SI20TPM20A2-11,SI20TP-170&,SI20GM-6H15","SI20TPM20A6-25 FS,SI20TPM20A2-16 FS","SI20TPM20A6-25,SI20TPM20A2-16",103,,109,,24,,25,,75,1712,"HK1003 -Blackpoint D2 - Rev.0E DD30092021"
1-4795,SI20TPM20A2-11,"NOT APPLICABLE - UPDATE OF TRANSITION PLAN TP-M20A",5121,"HK1003-Rev.0E-3",TT_Task,"55902",-,-,-,0,TK_NotStart,01/05/2022,,07/05/2022,,"SI20TPM20A2-10 FS","SI20TPM20A2-10","SI20TPM20A6-20 FS","SI20TPM20A6-20",91,,92,,21,,21,,61,1720,"HK1003 -Blackpoint D2 - Rev.0E DD30092021"
1-4796,SI20TPM20A2-16,"NOT APPLICABLE - ALL RELEVANT PERMITS & LOTO AVAILABLE FROM CUSTOMER TP-M20A",5121,"HK1003-Rev.0E-3",TT_Mile,"55902",-,-,-,0,TK_NotStart,05/09/2022,,05/09/2022,,"SI20TPM20A6-20 FS","SI20TPM20A6-20","SI20TPM20A6-25 FS","SI20TPM20A6-25",109,,109,,25,,25,,80,1712,"HK1003 -Blackpoint D2 - Rev.0E DD30092021"
1-4797,SI20TPM20A8-26,"NOT APPLICABLE - MEDIA  AVAILABLE TP-M20A",5121,"HK1003-Rev.0E-3",TT_Mile,"55902",-,-,-,0,TK_NotStart,15/04/2023,,15/04/2023,,"SI20TPM20A6-25 FS","SI20TPM20A6-25","SI20TPM20A8-30 FS","SI20TPM20A8-30",141,,141,,32,,32,,95,48,"HK1003 -Blackpoint D2 - Rev.0E DD30092021"
1-4798,SI20TPM21A8-30,"NOT APPLICABLE - COMMISSIONING OF TP-M21A",5121,"HK1003-Rev.0E-3",TT_Task,"55902",-,-,-,0,TK_NotStart,15/04/2023,,21/04/2023,,"SI20TPM21A6-25 FS,SI20TPM21A8-26 FS,SI20LCL8B10 FS","SI20TPM21A6-25,SI20TPM21A8-26,SI20LCL8B10","SI20GM-8E25 FS","SI20GM-8E25",141,,141,,32,,33,,95,48,"HK1003 -Blackpoint D2 - Rev.0E DD30092021"
1-4799,SI20TPM21A3-15,"NOT APPLICABLE - MATERIAL FOR TP INTEGRATION ON SITE TP-M21A",5121,"HK1003-Rev.0E-3",TT_Mile,"55902",-,-,-,0,TK_NotStart,25/07/2022,,25/07/2022,,"SI20TPM21A2-5 FS","SI20TPM21A2-5","SI20TPM21A6-25 FS,SI20TPM21A6-20 FS","SI20TPM21A6-25,SI20TPM21A6-20",103,,103,,24,,24,,75,1712,"HK1003 -Blackpoint D2 - Rev.0E DD30092021"
1-4800,SI20TPM21A6-25,"NOT APPLICABLE - TERMINATION OF TP-M21A",5121,"HK1003-Rev.0E-3",TT_Task,"55902",-,-,-,0,TK_NotStart,05/09/2022,,18/09/2022,,"SI20TPM21A3-15 FS,SI20TPM21A6-20 FS,SI20TPM21A2-16 FS","SI20TPM21A3-15,SI20TPM21A6-20,SI20TPM21A2-16","SI20TPM21A8-30 FS,SI20TPM21A8-26 FS","SI20TPM21A8-30,SI20TPM21A8-26",109,,111,,25,,25,,80,1712,"HK1003 -Blackpoint D2 - Rev.0E DD30092021"
1-4801,SI20TPM21A2-5,"NOT APPLICABLE - TECHNICAL CLARIFICATION WITH CUSTOMER / DESIGN FOR CONNECTION OF TP-M21A",5121,"HK1003-Rev.0E-3",TT_Task,"55902",-,-,-,100,TK_Complete,04/06/2021,04/06/2021,01/07/2021,01/07/2021,"SI-----1-05 FS","SI-----1-05","SI20TPM21A2-10 FS,SI20TPM21A3-15 FS,SI---2P2A10 FS","SI20TPM21A2-10,SI20TPM21A3-15,SI---2P2A10",43,43,47,47,10,10,11,11,16,,"HK1003 -Blackpoint D2 - Rev.0E DD30092021"
1-4802,SI20TPM21A2-10,"NOT APPLICABLE - FINAL AGREEMENT WITH CUSTOMER / ACCESS TIME / REQUIREMENTS TO TP ALIGNED TP-M21A",5121,"HK1003-Rev.0E-3",TT_Mile,"55902",-,-,-,0,TK_NotStart,02/05/2022,,02/05/2022,,"SI20TPM21A2-5 FS","SI20TPM21A2-5","SI20TPM21A6-20 FS,SI20TPM21A2-11 FS","SI20TPM21A6-20,SI20TPM21A2-11",91,,91,,21,,21,,61,1712,"HK1003 -Blackpoint D2 - Rev.0E DD30092021"
1-4803,SI20TPM21A6-20,"NOT APPLICABLE - INSTALLATION OF CONNECTION MATERIAL IN CUSTOMER SITE TP-M21A",5121,"HK1003-Rev.0E-3",TT_Task,"55902",-,-,-,0,TK_NotStart,25/07/2022,,04/09/2022,,"SI20TPM21A2-10 FS,SI20TPM21A3-15 FS,SI20TPM21A2-11 FS,SI20TP-171& FS,SI20GM-6H15 SS","SI20TPM21A2-10,SI20TPM21A3-15,SI20TPM21A2-11,SI20TP-171&,SI20GM-6H15","SI20TPM21A6-25 FS,SI20TPM21A2-16 FS","SI20TPM21A6-25,SI20TPM21A2-16",103,,109,,24,,25,,75,1712,"HK1003 -Blackpoint D2 - Rev.0E DD30092021"
1-4804,SI20TPM21A2-11,"NOT APPLICABLE - UPDATE OF TRANSITION PLAN TP-M21A",5121,"HK1003-Rev.0E-3",TT_Task,"55902",-,-,-,0,TK_NotStart,02/05/2022,,08/05/2022,,"SI20TPM21A2-10 FS","SI20TPM21A2-10","SI20TPM21A6-20 FS","SI20TPM21A6-20",91,,92,,21,,21,,61,1712,"HK1003 -Blackpoint D2 - Rev.0E DD30092021"
1-4805,SI20TPM21A2-16,"NOT APPLICABLE - ALL RELEVANT PERMITS & LOTO AVAILABLE FROM CUSTOMER TP-M21A",5121,"HK1003-Rev.0E-3",TT_Mile,"55902",-,-,-,0,TK_NotStart,05/09/2022,,05/09/2022,,"SI20TPM21A6-20 FS","SI20TPM21A6-20","SI20TPM21A6-25 FS","SI20TPM21A6-25",109,,109,,25,,25,,80,1712,"HK1003 -Blackpoint D2 - Rev.0E DD30092021"
1-4806,SI20TPM21A8-26,"NOT APPLICABLE - MEDIA  AVAILABLE TP-M21A",5121,"HK1003-Rev.0E-3",TT_Mile,"55902",-,-,-,0,TK_NotStart,15/04/2023,,15/04/2023,,"SI20TPM21A6-25 FS","SI20TPM21A6-25","SI20TPM21A8-30 FS","SI20TPM21A8-30",141,,141,,32,,32,,95,48,"HK1003 -Blackpoint D2 - Rev.0E DD30092021"
1-4807,SI20TPI12A8-30,"COMMISSIONING OF TP-I12",5121,"HK1003-Rev.0E-3",TT_Task,"55902",-,-,-,0,TK_NotStart,07/02/2023,,13/02/2023,,"SI20TPI12A6-25 FS,SI20TPI12A8-26 FS","SI20TPI12A6-25,SI20TPI12A8-26","SI20CJ-8-25 FS,SI20UBA7C-25 FS","SI20CJ-8-25,SI20UBA7C-25",131,,132,,30,,30,,89,72,"HK1003 -Blackpoint D2 - Rev.0E DD30092021"
1-4808,SI20TPI12A3-15,"MATERIAL FOR TP INTEGRATION ON SITE TP-I12",5121,"HK1003-Rev.0E-3",TT_Mile,"55902",-,-,-,0,TK_NotStart,30/06/2022,,30/06/2022,,"SI20TPI12A2-5 FS","SI20TPI12A2-5","SI20TPI12A6-25 FS,SI20TPI12A6-20 FS","SI20TPI12A6-25,SI20TPI12A6-20",99,,99,,23,,23,,72,1512,"HK1003 -Blackpoint D2 - Rev.0E DD30092021"
1-4809,SI20TPI12A6-25,"TERMINATION OF TP-I12",5121,"HK1003-Rev.0E-3",TT_Task,"55902",-,-,-,0,TK_NotStart,28/07/2022,,10/08/2022,,"SI20TPI12A3-15 FS,SI20TPI12A6-20 FS,SI20TPI12A2-16 FS","SI20TPI12A3-15,SI20TPI12A6-20,SI20TPI12A2-16","SI20TPI12A8-30 FS,SI20TPI12A8-26 FS","SI20TPI12A8-30,SI20TPI12A8-26",103,,105,,24,,24,,75,1512,"HK1003 -Blackpoint D2 - Rev.0E DD30092021"
1-4810,SI20TPI12A2-5,"TECHNICAL CLARIFICATION WITH CUSTOMER / DESIGN FOR CONNECTION OF TP-I12",5121,"HK1003-Rev.0E-3",TT_Task,"55902",-,-,-,100,TK_Complete,24/05/2021,24/05/2021,18/07/2021,18/07/2021,"SI-----1-05 FS","SI-----1-05","SI20TPI12A2-10 FS,SI20TPI12A3-15 FS","SI20TPI12A2-10,SI20TPI12A3-15",42,42,50,50,9,9,11,11,13,,"HK1003 -Blackpoint D2 - Rev.0E DD30092021"
1-4811,SI20TPI12A2-10,"FINAL AGREEMENT WITH CUSTOMER / ACCESS TIME / REQUIREMENTS TO TP ALIGNED TP-I12",5121,"HK1003-Rev.0E-3",TT_Mile,"55902",-,-,-,100,TK_Complete,19/07/2021,19/07/2021,19/07/2021,19/07/2021,"SI20TPI12A2-5 FS","SI20TPI12A2-5","SI20TPI12A6-20 FS,SI20TPI12A2-11 FS,SP20CJP2-70 FS","SI20TPI12A6-20,SI20TPI12A2-11,SP20CJP2-70",50,50,50,50,11,11,11,11,22,,"HK1003 -Blackpoint D2 - Rev.0E DD30092021"
1-4812,SI20TPI12A6-20,"INSTALLATION OF CONNECTION MATERIAL IN CUSTOMER SITE TP-I12",5121,"HK1003-Rev.0E-3",TT_Task,"55902",-,-,-,0,TK_NotStart,30/06/2022,,27/07/2022,,"SI20TPI12A2-10 FS,SI20TPI12A3-15 FS,SI20TPI12A2-11 FS,SI20UCA7-16 FS","SI20TPI12A2-10,SI20TPI12A3-15,SI20TPI12A2-11,SI20UCA7-16","SI20TPI12A6-25 FS,SI20TPI12A2-16 FS,SI20TP-230& SS","SI20TPI12A6-25,SI20TPI12A2-16,SI20TP-230&",99,,103,,23,,24,,72,1512,"HK1003 -Blackpoint D2 - Rev.0E DD30092021"
1-4813,SI20TPI12A2-11,"UPDATE OF TRANSITION PLAN TP-I12",5121,"HK1003-Rev.0E-3",TT_Task,"55902",-,-,-,0,TK_NotStart,07/04/2022,,13/04/2022,,"SI20TPI12A2-10 FS","SI20TPI12A2-10","SI20TPI12A6-20 FS","SI20TPI12A6-20",87,,88,,20,,20,,56,1512,"HK1003 -Blackpoint D2 - Rev.0E DD30092021"
1-4814,SI20TPI12A2-16,"ALL RELEVANT PERMITS & LOTO AVAILABLE FROM CUSTOMER TP-I12",5121,"HK1003-Rev.0E-3",TT_Mile,"55902",-,-,-,0,TK_NotStart,28/07/2022,,28/07/2022,,"SI20TPI12A6-20 FS","SI20TPI12A6-20","SI20TPI12A6-25 FS","SI20TPI12A6-25",103,,103,,24,,24,,76,1512,"HK1003 -Blackpoint D2 - Rev.0E DD30092021"
1-4815,SI20TPI12A8-26,"MEDIA  AVAILABLE TP-I12",5121,"HK1003-Rev.0E-3",TT_Mile,"55902",-,-,-,0,TK_NotStart,07/02/2023,,07/02/2023,,"SI20TPI12A6-25 FS","SI20TPI12A6-25","SI20TPI12A8-30 FS","SI20TPI12A8-30",131,,131,,30,,30,,89,72,"HK1003 -Blackpoint D2 - Rev.0E DD30092021"
1-4816,SI20TPM22A8-30,"NOT APPLICABLE - COMMISSIONING OF TP-M22A",5121,"HK1003-Rev.0E-3",TT_Task,"55902",-,-,-,0,TK_NotStart,15/04/2023,,21/04/2023,,"SI20TPM22A6-25 FS,SI20TPM22A8-26 FS,SI20LCL8B10 FS","SI20TPM22A6-25,SI20TPM22A8-26,SI20LCL8B10","SI20GM-8E25 FS","SI20GM-8E25",141,,141,,32,,33,,95,48,"HK1003 -Blackpoint D2 - Rev.0E DD30092021"
1-4817,SI20TPM22A3-15,"NOT APPLICABLE - MATERIAL FOR TP INTEGRATION ON SITE TP-M22A",5121,"HK1003-Rev.0E-3",TT_Mile,"55902",-,-,-,0,TK_NotStart,20/10/2022,,20/10/2022,,"SI20TPM22A2-5 FS","SI20TPM22A2-5","SI20TPM22A6-25 FS,SI20TPM22A6-20 FS","SI20TPM22A6-25,SI20TPM22A6-20",115,,115,,27,,27,,83,1016,"HK1003 -Blackpoint D2 - Rev.0E DD30092021"
1-4818,SI20TPM22A6-25,"NOT APPLICABLE - TERMINATION OF TP-M22A",5121,"HK1003-Rev.0E-3",TT_Task,"55902",-,-,-,0,TK_NotStart,01/12/2022,,14/12/2022,,"SI20TPM22A3-15 FS,SI20TPM22A6-20 FS,SI20TPM22A2-16 FS","SI20TPM22A3-15,SI20TPM22A6-20,SI20TPM22A2-16","SI20TPM22A8-30 FS,SI20TPM22A8-26 FS","SI20TPM22A8-30,SI20TPM22A8-26",121,,123,,28,,28,,86,1016,"HK1003 -Blackpoint D2 - Rev.0E DD30092021"
1-4819,SI20TPM22A2-5,"NOT APPLICABLE - TECHNICAL CLARIFICATION WITH CUSTOMER / DESIGN FOR CONNECTION OF TP-M22A",5121,"HK1003-Rev.0E-3",TT_Task,"55902",-,-,-,100,TK_Complete,04/06/2021,04/06/2021,01/07/2021,01/07/2021,"SI-----1-05 FS","SI-----1-05","SI20TPM22A2-10 FS,SI20TPM22A3-15 FS,SI---2P2A10 FS","SI20TPM22A2-10,SI20TPM22A3-15,SI---2P2A10",43,43,47,47,10,10,11,11,16,,"HK1003 -Blackpoint D2 - Rev.0E DD30092021"
1-4820,SI20TPM22A2-10,"NOT APPLICABLE - FINAL AGREEMENT WITH CUSTOMER / ACCESS TIME / REQUIREMENTS TO TP ALIGNED TP-M22A",5121,"HK1003-Rev.0E-3",TT_Mile,"55902",-,-,-,0,TK_NotStart,28/07/2022,,28/07/2022,,"SI20TPM22A2-5 FS","SI20TPM22A2-5","SI20TPM22A6-20 FS,SI20TPM22A2-11 FS","SI20TPM22A6-20,SI20TPM22A2-11",103,,103,,24,,24,,76,1016,"HK1003 -Blackpoint D2 - Rev.0E DD30092021"
1-4821,SI20TPM22A6-20,"NOT APPLICABLE - INSTALLATION OF CONNECTION MATERIAL IN CUSTOMER SITE TP-M22A",5121,"HK1003-Rev.0E-3",TT_Task,"55902",-,-,-,0,TK_NotStart,20/10/2022,,30/11/2022,,"SI20TPM22A2-10 FS,SI20TPM22A3-15 FS,SI20TPM22A2-11 FS,SI20TP-172& FS,SI20LCL6A15 SS","SI20TPM22A2-10,SI20TPM22A3-15,SI20TPM22A2-11,SI20TP-172&,SI20LCL6A15","SI20TPM22A6-25 FS,SI20TPM22A2-16 FS","SI20TPM22A6-25,SI20TPM22A2-16",115,,121,,27,,28,,83,1016,"HK1003 -Blackpoint D2 - Rev.0E DD30092021"
1-4822,SI20TPM22A2-11,"NOT APPLICABLE - UPDATE OF TRANSITION PLAN TP-M22A",5121,"HK1003-Rev.0E-3",TT_Task,"55902",-,-,-,0,TK_NotStart,28/07/2022,,03/08/2022,,"SI20TPM22A2-10 FS","SI20TPM22A2-10","SI20TPM22A6-20 FS","SI20TPM22A6-20",103,,104,,24,,24,,76,1016,"HK1003 -Blackpoint D2 - Rev.0E DD30092021"
1-4823,SI20TPM22A2-16,"NOT APPLICABLE - ALL RELEVANT PERMITS & LOTO AVAILABLE FROM CUSTOMER TP-M22A",5121,"HK1003-Rev.0E-3",TT_Mile,"55902",-,-,-,0,TK_NotStart,01/12/2022,,01/12/2022,,"SI20TPM22A6-20 FS","SI20TPM22A6-20","SI20TPM22A6-25 FS","SI20TPM22A6-25",121,,121,,28,,28,,86,1016,"HK1003 -Blackpoint D2 - Rev.0E DD30092021"
1-4824,SI20TPM22A8-26,"NOT APPLICABLE - MEDIA  AVAILABLE TP-M22A",5121,"HK1003-Rev.0E-3",TT_Mile,"55902",-,-,-,0,TK_NotStart,15/04/2023,,15/04/2023,,"SI20TPM22A6-25 FS","SI20TPM22A6-25","SI20TPM22A8-30 FS","SI20TPM22A8-30",141,,141,,32,,32,,95,48,"HK1003 -Blackpoint D2 - Rev.0E DD30092021"
1-4825,SI20TPM23A8-30,"NOT APPLICABLE - COMMISSIONING OF TP-M23A",5121,"HK1003-Rev.0E-3",TT_Task,"55902",-,-,-,0,TK_NotStart,15/04/2023,,21/04/2023,,"SI20TPM23A6-25 FS,SI20TPM23A8-26 FS,SI20LCL8B10 FS","SI20TPM23A6-25,SI20TPM23A8-26,SI20LCL8B10","SI20GM-8E25 FS","SI20GM-8E25",141,,141,,32,,33,,95,48,"HK1003 -Blackpoint D2 - Rev.0E DD30092021"
1-4826,SI20TPM23A3-15,"NOT APPLICABLE - MATERIAL FOR TP INTEGRATION ON SITE TP-M23A",5121,"HK1003-Rev.0E-3",TT_Mile,"55902",-,-,-,0,TK_NotStart,25/07/2022,,25/07/2022,,"SI20TPM23A2-5 FS","SI20TPM23A2-5","SI20TPM23A6-25 FS,SI20TPM23A6-20 FS","SI20TPM23A6-25,SI20TPM23A6-20",103,,103,,24,,24,,75,1712,"HK1003 -Blackpoint D2 - Rev.0E DD30092021"
1-4827,SI20TPM23A6-25,"NOT APPLICABLE - TERMINATION OF TP-M23A",5121,"HK1003-Rev.0E-3",TT_Task,"55902",-,-,-,0,TK_NotStart,05/09/2022,,18/09/2022,,"SI20TPM23A3-15 FS,SI20TPM23A6-20 FS,SI20TPM23A2-16 FS","SI20TPM23A3-15,SI20TPM23A6-20,SI20TPM23A2-16","SI20TPM23A8-30 FS,SI20TPM23A8-26 FS","SI20TPM23A8-30,SI20TPM23A8-26",109,,111,,25,,25,,80,1712,"HK1003 -Blackpoint D2 - Rev.0E DD30092021"
1-4828,SI20TPM23A2-5,"NOT APPLICABLE - TECHNICAL CLARIFICATION WITH CUSTOMER / DESIGN FOR CONNECTION OF TP-M23A",5121,"HK1003-Rev.0E-3",TT_Task,"55902",-,-,-,100,TK_Complete,04/06/2021,04/06/2021,01/07/2021,01/07/2021,"SI-----1-05 FS","SI-----1-05","SI20TPM23A2-10 FS,SI20TPM23A3-15 FS,SI---2P2A10 FS","SI20TPM23A2-10,SI20TPM23A3-15,SI---2P2A10",43,43,47,47,10,10,11,11,16,,"HK1003 -Blackpoint D2 - Rev.0E DD30092021"
1-4829,SI20TPM23A2-10,"NOT APPLICABLE - FINAL AGREEMENT WITH CUSTOMER / ACCESS TIME / REQUIREMENTS TO TP ALIGNED TP-M23A",5121,"HK1003-Rev.0E-3",TT_Mile,"55902",-,-,-,0,TK_NotStart,02/05/2022,,02/05/2022,,"SI20TPM23A2-5 FS","SI20TPM23A2-5","SI20TPM23A6-20 FS,SI20TPM23A2-11 FS","SI20TPM23A6-20,SI20TPM23A2-11",91,,91,,21,,21,,61,1712,"HK1003 -Blackpoint D2 - Rev.0E DD30092021"
1-4830,SI20TPM23A6-20,"NOT APPLICABLE - INSTALLATION OF CONNECTION MATERIAL IN CUSTOMER SITE TP-M23A",5121,"HK1003-Rev.0E-3",TT_Task,"55902",-,-,-,0,TK_NotStart,25/07/2022,,04/09/2022,,"SI20TPM23A2-10 FS,SI20TPM23A3-15 FS,SI20TPM23A2-11 FS,SI20TP-173& FS,SI20GM-6H15 SS","SI20TPM23A2-10,SI20TPM23A3-15,SI20TPM23A2-11,SI20TP-173&,SI20GM-6H15","SI20TPM23A6-25 FS,SI20TPM23A2-16 FS","SI20TPM23A6-25,SI20TPM23A2-16",103,,109,,24,,25,,75,1712,"HK1003 -Blackpoint D2 - Rev.0E DD30092021"
1-4831,SI20TPM23A2-11,"NOT APPLICABLE - UPDATE OF TRANSITION PLAN TP-M23A",5121,"HK1003-Rev.0E-3",TT_Task,"55902",-,-,-,0,TK_NotStart,02/05/2022,,08/05/2022,,"SI20TPM23A2-10 FS","SI20TPM23A2-10","SI20TPM23A6-20 FS","SI20TPM23A6-20",91,,92,,21,,21,,61,1712,"HK1003 -Blackpoint D2 - Rev.0E DD30092021"
1-4832,SI20TPM23A2-16,"NOT APPLICABLE - ALL RELEVANT PERMITS & LOTO AVAILABLE FROM CUSTOMER TP-M23A",5121,"HK1003-Rev.0E-3",TT_Mile,"55902",-,-,-,0,TK_NotStart,05/09/2022,,05/09/2022,,"SI20TPM23A6-20 FS","SI20TPM23A6-20","SI20TPM23A6-25 FS","SI20TPM23A6-25",109,,109,,25,,25,,80,1712,"HK1003 -Blackpoint D2 - Rev.0E DD30092021"
1-4833,SI20TPM23A8-26,"NOT APPLICABLE - MEDIA  AVAILABLE TP-M23A",5121,"HK1003-Rev.0E-3",TT_Mile,"55902",-,-,-,0,TK_NotStart,15/04/2023,,15/04/2023,,"SI20TPM23A6-25 FS","SI20TPM23A6-25","SI20TPM23A8-30 FS","SI20TPM23A8-30",141,,141,,32,,32,,95,48,"HK1003 -Blackpoint D2 - Rev.0E DD30092021"
1-4834,SI20TPM24A8-30,"NOT APPLICABLE - COMMISSIONING OF TP-M24A",5121,"HK1003-Rev.0E-3",TT_Task,"55902",-,-,-,0,TK_NotStart,15/04/2023,,21/04/2023,,"SI20TPM24A6-25 FS,SI20TPM24A8-26 FS,SI20GM-8E10 FS,SI20GM-8F10 FS,SI20GM-8B10 FS","SI20TPM24A6-25,SI20TPM24A8-26,SI20GM-8E10,SI20GM-8F10,SI20GM-8B10","SI20GM-8E25 FS","SI20GM-8E25",141,,141,,32,,33,,95,48,"HK1003 -Blackpoint D2 - Rev.0E DD30092021"
1-4835,SI20TPM24A3-15,"NOT APPLICABLE - MATERIAL FOR TP INTEGRATION ON SITE TP-M24A",5121,"HK1003-Rev.0E-3",TT_Mile,"55902",-,-,-,0,TK_NotStart,07/08/2022,,07/08/2022,,"SI20TPM24A2-5 FS","SI20TPM24A2-5","SI20TPM24A6-25 FS,SI20TPM24A6-20 FS","SI20TPM24A6-25,SI20TPM24A6-20",105,,105,,24,,24,,77,1272,"HK1003 -Blackpoint D2 - Rev.0E DD30092021"
1-4836,SI20TPM24A6-25,"NOT APPLICABLE - TERMINATION OF TP-M24A",5121,"HK1003-Rev.0E-3",TT_Task,"55902",-,-,-,0,TK_NotStart,30/10/2022,,12/11/2022,,"SI20TPM24A3-15 FS,SI20TPM24A6-20 FS,SI20TPM24A2-16 FS","SI20TPM24A3-15,SI20TPM24A6-20,SI20TPM24A2-16","SI20TPM24A8-30 FS,SI20TPM24A8-26 FS","SI20TPM24A8-30,SI20TPM24A8-26",117,,119,,27,,27,,84,1272,"HK1003 -Blackpoint D2 - Rev.0E DD30092021"
1-4837,SI20TPM24A2-5,"NOT APPLICABLE - TECHNICAL CLARIFICATION WITH CUSTOMER / DESIGN FOR CONNECTION OF TP-M24A",5121,"HK1003-Rev.0E-3",TT_Task,"55902",-,-,-,100,TK_Complete,04/06/2021,04/06/2021,01/07/2021,01/07/2021,"SI-----1-05 FS","SI-----1-05","SI20TPM24A2-10 FS,SI20TPM24A3-15 FS,SI---2P2A10 FS","SI20TPM24A2-10,SI20TPM24A3-15,SI---2P2A10",43,43,47,47,10,10,11,11,16,,"HK1003 -Blackpoint D2 - Rev.0E DD30092021"
1-4838,SI20TPM24A2-10,"NOT APPLICABLE - FINAL AGREEMENT WITH CUSTOMER / ACCESS TIME / REQUIREMENTS TO TP ALIGNED TP-M24A",5121,"HK1003-Rev.0E-3",TT_Mile,"55902",-,-,-,0,TK_NotStart,15/05/2022,,15/05/2022,,"SI20TPM24A2-5 FS","SI20TPM24A2-5","SI20TPM24A6-20 FS,SI20TPM24A2-11 FS","SI20TPM24A6-20,SI20TPM24A2-11",93,,93,,21,,21,,65,1272,"HK1003 -Blackpoint D2 - Rev.0E DD30092021"
1-4839,SI20TPM24A6-20,"NOT APPLICABLE - INSTALLATION OF CONNECTION MATERIAL IN CUSTOMER SITE TP-M24A",5121,"HK1003-Rev.0E-3",TT_Task,"55902",-,-,-,0,TK_NotStart,07/08/2022,,29/10/2022,,"SI20TPM24A2-10 FS,SI20TPM24A3-15 FS,SI20TPM24A2-11 FS,SI20TP-183& FS,SI20URA6-15 SS","SI20TPM24A2-10,SI20TPM24A3-15,SI20TPM24A2-11,SI20TP-183&,SI20URA6-15","SI20TPM24A6-25 FS,SI20TPM24A2-16 FS","SI20TPM24A6-25,SI20TPM24A2-16",105,,117,,24,,27,,77,1272,"HK1003 -Blackpoint D2 - Rev.0E DD30092021"
1-4840,SI20TPM24A2-11,"NOT APPLICABLE - UPDATE OF TRANSITION PLAN TP-M24A",5121,"HK1003-Rev.0E-3",TT_Task,"55902",-,-,-,0,TK_NotStart,15/05/2022,,21/05/2022,,"SI20TPM24A2-10 FS","SI20TPM24A2-10","SI20TPM24A6-20 FS","SI20TPM24A6-20",93,,94,,21,,21,,65,1272,"HK1003 -Blackpoint D2 - Rev.0E DD30092021"
1-4841,SI20TPM24A2-16,"NOT APPLICABLE - ALL RELEVANT PERMITS & LOTO AVAILABLE FROM CUSTOMER TP-M24A",5121,"HK1003-Rev.0E-3",TT_Mile,"55902",-,-,-,0,TK_NotStart,30/10/2022,,30/10/2022,,"SI20TPM24A6-20 FS","SI20TPM24A6-20","SI20TPM24A6-25 FS","SI20TPM24A6-25",117,,117,,27,,27,,84,1272,"HK1003 -Blackpoint D2 - Rev.0E DD30092021"
1-4842,SI20TPM24A8-26,"NOT APPLICABLE - MEDIA  AVAILABLE TP-M24A",5121,"HK1003-Rev.0E-3",TT_Mile,"55902",-,-,-,0,TK_NotStart,15/04/2023,,15/04/2023,,"SI20TPM24A6-25 FS","SI20TPM24A6-25","SI20TPM24A8-30 FS","SI20TPM24A8-30",141,,141,,32,,32,,95,48,"HK1003 -Blackpoint D2 - Rev.0E DD30092021"
1-4843,SI20TPM25A8-30,"NOT APPLICABLE - COMMISSIONING OF TP-M25A",5121,"HK1003-Rev.0E-3",TT_Task,"55902",-,-,-,0,TK_NotStart,07/02/2023,,13/02/2023,,"SI20TPM25A6-25 FS,SI20TPM25A8-26 FS","SI20TPM25A6-25,SI20TPM25A8-26","SI20UVM-8E27 FS,SI20GM-8B25 FS,SI20GM-8E25 FS,SI20GM-8B27 FS","SI20UVM-8E27,SI20GM-8B25,SI20GM-8E25,SI20GM-8B27",131,,132,,30,,30,,89,296,"HK1003 -Blackpoint D2 - Rev.0E DD30092021"
1-4844,SI20TPM25A3-15,"NOT APPLICABLE - MATERIAL FOR TP INTEGRATION ON SITE TP-M25A",5121,"HK1003-Rev.0E-3",TT_Mile,"55902",-,-,-,0,TK_NotStart,04/05/2022,,04/05/2022,,"SI20TPM25A2-5 FS","SI20TPM25A2-5","SI20TPM25A6-25 FS,SI20TPM25A6-20 FS","SI20TPM25A6-25,SI20TPM25A6-20",91,,91,,21,,21,,62,2192,"HK1003 -Blackpoint D2 - Rev.0E DD30092021"
1-4845,SI20TPM25A6-25,"NOT APPLICABLE - TERMINATION OF TP-M25A",5121,"HK1003-Rev.0E-3",TT_Task,"55902",-,-,-,0,TK_NotStart,24/01/2023,,06/02/2023,,"SI20TPM25A3-15 FS,SI20TPM25A6-20 FS,SI20TPM25A2-16 FS","SI20TPM25A3-15,SI20TPM25A6-20,SI20TPM25A2-16","SI20TPM25A8-30 FS,SI20TPM25A8-26 FS","SI20TPM25A8-30,SI20TPM25A8-26",129,,131,,30,,30,,89,296,"HK1003 -Blackpoint D2 - Rev.0E DD30092021"
1-4846,SI20TPM25A2-5,"NOT APPLICABLE - TECHNICAL CLARIFICATION WITH CUSTOMER / DESIGN FOR CONNECTION OF TP-M25A",5121,"HK1003-Rev.0E-3",TT_Task,"55902",-,-,-,0,TK_NotStart,04/02/2022,,03/03/2022,,"SI-----1-05 FS","SI-----1-05","SI20TPM25A2-10 FS,SI20TPM25A3-15 FS","SI20TPM25A2-10,SI20TPM25A3-15",78,,82,,18,,19,,48,2192,"HK1003 -Blackpoint D2 - Rev.0E DD30092021"
1-4847,SI20TPM25A2-10,"NOT APPLICABLE - FINAL AGREEMENT WITH CUSTOMER / ACCESS TIME / REQUIREMENTS TO TP ALIGNED TP-M25A",5121,"HK1003-Rev.0E-3",TT_Mile,"55902",-,-,-,0,TK_NotStart,04/03/2022,,04/03/2022,,"SI20TPM25A2-5 FS","SI20TPM25A2-5","SI20TPM25A6-20 FS,SI20TPM25A2-11 FS","SI20TPM25A6-20,SI20TPM25A2-11",82,,82,,19,,19,,52,2192,"HK1003 -Blackpoint D2 - Rev.0E DD30092021"
1-4848,SI20TPM25A6-20,"NOT APPLICABLE - INSTALLATION OF CONNECTION MATERIAL IN CUSTOMER SITE TP-M25A",5121,"HK1003-Rev.0E-3",TT_Task,"55902",-,-,-,0,TK_NotStart,04/05/2022,,31/05/2022,,"SI20TPM25A2-10 FS,SI20TPM25A3-15 FS,SI20TPM25A2-11 FS,SI20SD-110& SS,SI20TP-184& FS","SI20TPM25A2-10,SI20TPM25A3-15,SI20TPM25A2-11,SI20SD-110&,SI20TP-184&","SI20TPM25A6-25 FS,SI20TPM25A2-16 FS","SI20TPM25A6-25,SI20TPM25A2-16",91,,95,,21,,22,,62,2192,"HK1003 -Blackpoint D2 - Rev.0E DD30092021"
1-4849,SI20TPM25A2-11,"NOT APPLICABLE - UPDATE OF TRANSITION PLAN TP-M25A",5121,"HK1003-Rev.0E-3",TT_Mile,"55902",-,-,-,0,TK_NotStart,04/05/2022,,04/05/2022,,"SI20TPM25A2-10 FS","SI20TPM25A2-10","SI20TPM25A6-20 FS","SI20TPM25A6-20",91,,91,,21,,21,,62,2192,"HK1003 -Blackpoint D2 - Rev.0E DD30092021"
1-4850,SI20TPM25A2-16,"NOT APPLICABLE - ALL RELEVANT PERMITS & LOTO AVAILABLE FROM CUSTOMER TP-M25A",5121,"HK1003-Rev.0E-3",TT_Mile,"55902",-,-,-,0,TK_NotStart,24/01/2023,,24/01/2023,,"SI20TPM25A6-20 FS","SI20TPM25A6-20","SI20TPM25A6-25 FS","SI20TPM25A6-25",129,,129,,30,,30,,89,296,"HK1003 -Blackpoint D2 - Rev.0E DD30092021"
1-4851,SI20TPM25A8-26,"NOT APPLICABLE - MEDIA  AVAILABLE TP-M25A",5121,"HK1003-Rev.0E-3",TT_Mile,"55902",-,-,-,0,TK_NotStart,07/02/2023,,07/02/2023,,"SI20TPM25A6-25 FS","SI20TPM25A6-25","SI20TPM25A8-30 FS","SI20TPM25A8-30",131,,131,,30,,30,,90,296,"HK1003 -Blackpoint D2 - Rev.0E DD30092021"
1-4852,SI--B--2-94,"BASIC DESIGN CABLE - OVERALL CABLE ROUTING DWG YD16 - FINAL SUBMISSION",5121,"HK1003-Rev.0E-3",TT_Task,"55902",-,-,-,100,TK_Complete,03/04/2021,03/04/2021,16/04/2021,16/04/2021,"SI--B--2-66 FS","SI--B--2-66","SI--B--2-30 FS","SI--B--2-30",35,35,36,36,8,8,8,8,7,,"HK1003 -Blackpoint D2 - Rev.0E DD30092021"
1-4853,SI20TPM26A8-30,"COMMISSIONING OF TP-M26A",5121,"HK1003-Rev.0E-3",TT_Task,"55902",-,-,-,0,TK_NotStart,25/04/2023,,01/05/2023,,"SI20TPM26A6-25 FS,SI20TPM26A8-26 FS","SI20TPM26A6-25,SI20TPM26A8-26","SI20LBG8A25 FS","SI20LBG8A25",142,,143,,33,,33,,96,56,"HK1003 -Blackpoint D2 - Rev.0E DD30092021"
1-4854,SI20TPM26A3-15,"MATERIAL FOR TP INTEGRATION ON SITE TP-M26A",5121,"HK1003-Rev.0E-3",TT_Mile,"55902",-,-,-,0,TK_NotStart,07/05/2022,,07/05/2022,,"SI20TPM26A2-5 FS","SI20TPM26A2-5","SI20TPM26A6-25 FS,SI20TPM26A6-20 FS","SI20TPM26A6-25,SI20TPM26A6-20",92,,92,,21,,21,,63,2768,"HK1003 -Blackpoint D2 - Rev.0E DD30092021"
1-4855,SI20TPM26A6-25,"TERMINATION OF TP-M26A",5121,"HK1003-Rev.0E-3",TT_Task,"55902",-,-,-,0,TK_NotStart,14/05/2022,,20/05/2022,,"SI20TPM26A3-15 FS,SI20TPM26A6-20 FS,SI20TPM26A2-16 FS","SI20TPM26A3-15,SI20TPM26A6-20,SI20TPM26A2-16","SI20TPM26A8-30 FS,SI20TPM26A8-26 FS","SI20TPM26A8-30,SI20TPM26A8-26",93,,93,,21,,21,,65,2768,"HK1003 -Blackpoint D2 - Rev.0E DD30092021"
1-4856,SI20TPM26A2-5,"TECHNICAL CLARIFICATION WITH CUSTOMER / DESIGN FOR CONNECTION OF TP-M26A",5121,"HK1003-Rev.0E-3",TT_Task,"55902",-,-,-,100,TK_Complete,11/04/2021,11/04/2021,08/05/2021,08/05/2021,"SI-----1-05 FS,SI--M--2D21 FS","SI-----1-05,SI--M--2D21","SI20TPM26A2-10 FS,SI20TPM26A3-15 FS","SI20TPM26A2-10,SI20TPM26A3-15",36,36,40,40,8,8,9,9,8,,"HK1003 -Blackpoint D2 - Rev.0E DD30092021"
1-4857,SI20TPM26A2-10,"FINAL AGREEMENT WITH CUSTOMER / ACCESS TIME / REQUIREMENTS TO TP ALIGNED TP-M26A",5121,"HK1003-Rev.0E-3",TT_Mile,"55902",-,-,-,0,TK_NotStart,09/02/2022,,09/02/2022,,"SI20TPM26A2-5 FS","SI20TPM26A2-5","SI20TPM26A6-20 FS,SI20TPM26A2-11 FS","SI20TPM26A6-20,SI20TPM26A2-11",79,,79,,18,,18,,48,3464,"HK1003 -Blackpoint D2 - Rev.0E DD30092021"
1-4858,SI20TPM26A6-20,"INSTALLATION OF CONNECTION MATERIAL IN CUSTOMER SITE TP-M26A",5121,"HK1003-Rev.0E-3",TT_Task,"55902",-,-,-,0,TK_NotStart,07/05/2022,,13/05/2022,,"SI20TPM26A2-10 FS,SI20TPM26A3-15 FS,SI20TPM26A2-11 FS,SI20ULY5-45 SS,SI20TP-185& FS","SI20TPM26A2-10,SI20TPM26A3-15,SI20TPM26A2-11,SI20ULY5-45,SI20TP-185&","SI20TPM26A6-25 FS,SI20TPM26A2-16 FS","SI20TPM26A6-25,SI20TPM26A2-16",92,,92,,21,,21,,63,2768,"HK1003 -Blackpoint D2 - Rev.0E DD30092021"
1-4859,SI20TPM26A2-11,"UPDATE OF TRANSITION PLAN TP-M26A",5121,"HK1003-Rev.0E-3",TT_Mile,"55902",-,-,-,0,TK_NotStart,09/02/2022,,09/02/2022,,"SI20TPM26A2-10 FS","SI20TPM26A2-10","SI20TPM26A6-20 FS","SI20TPM26A6-20",79,,79,,18,,18,,48,3464,"HK1003 -Blackpoint D2 - Rev.0E DD30092021"
1-4860,SI20TPM26A2-16,"ALL RELEVANT PERMITS & LOTO AVAILABLE FROM CUSTOMER TP-M26A",5121,"HK1003-Rev.0E-3",TT_Mile,"55902",-,-,-,0,TK_NotStart,14/05/2022,,14/05/2022,,"SI20TPM26A6-20 FS","SI20TPM26A6-20","SI20TPM26A6-25 FS","SI20TPM26A6-25",93,,93,,21,,21,,65,2768,"HK1003 -Blackpoint D2 - Rev.0E DD30092021"
1-4861,SI20TPM26A8-26,"MEDIA  AVAILABLE TP-M26A",5121,"HK1003-Rev.0E-3",TT_Mile,"55902",-,-,-,0,TK_NotStart,25/04/2023,,25/04/2023,,"SI20TPM26A6-25 FS","SI20TPM26A6-25","SI20TPM26A8-30 FS","SI20TPM26A8-30",142,,142,,33,,33,,96,56,"HK1003 -Blackpoint D2 - Rev.0E DD30092021"
1-4862,SI20TPM28A8-30,"COMMISSIONING OF TP-M28A",5121,"HK1003-Rev.0E-3",TT_Task,"55902",-,-,-,0,TK_NotStart,15/03/2023,,21/03/2023,,"SI20TPM28A6-25 FS,SI20TPM28A8-26 FS,SI20LDK8B10 FS","SI20TPM28A6-25,SI20TPM28A8-26,SI20LDK8B10","SI20--P6-75 FS,SI20LDK8B25 FS","SI20--P6-75,SI20LDK8B25",136,,137,,31,,32,,92,80,"HK1003 -Blackpoint D2 - Rev.0E DD30092021"
1-4863,SI20TPM28A3-15,"MATERIAL FOR TP INTEGRATION ON SITE TP-M28A",5121,"HK1003-Rev.0E-3",TT_Mile,"55902",-,-,-,0,TK_NotStart,04/05/2022,,04/05/2022,,"SI20TPM28A2-5 FS","SI20TPM28A2-5","SI20TPM28A6-25 FS,SI20TPM28A6-20 FS","SI20TPM28A6-25,SI20TPM28A6-20",91,,91,,21,,21,,62,2040,"HK1003 -Blackpoint D2 - Rev.0E DD30092021"
1-4864,SI20TPM28A6-25,"TERMINATION OF TP-M28A",5121,"HK1003-Rev.0E-3",TT_Task,"55902",-,-,-,0,TK_NotStart,29/06/2022,,12/07/2022,,"SI20TPM28A3-15 FS,SI20TPM28A6-20 FS,SI20TPM28A2-16 FS","SI20TPM28A3-15,SI20TPM28A6-20,SI20TPM28A2-16","SI20TPM28A8-30 FS,SI20TPM28A8-26 FS","SI20TPM28A8-30,SI20TPM28A8-26",99,,101,,23,,23,,71,2040,"HK1003 -Blackpoint D2 - Rev.0E DD30092021"
1-4865,SI20TPM28A2-5,"TECHNICAL CLARIFICATION WITH CUSTOMER / DESIGN FOR CONNECTION OF TP-M28A",5121,"HK1003-Rev.0E-3",TT_Task,"55902",-,-,-,100,TK_Complete,11/04/2021,11/04/2021,08/05/2021,08/05/2021,"SI-----1-05 FS,SI--M--2D21 FS","SI-----1-05,SI--M--2D21","SI20TPM28A2-10 FS,SI20TPM28A3-15 FS,SI---2P2A10 FS","SI20TPM28A2-10,SI20TPM28A3-15,SI---2P2A10",36,36,40,40,8,8,9,9,8,,"HK1003 -Blackpoint D2 - Rev.0E DD30092021"
1-4866,SI20TPM28A2-10,"FINAL AGREEMENT WITH CUSTOMER / ACCESS TIME / REQUIREMENTS TO TP ALIGNED TP-M28A",5121,"HK1003-Rev.0E-3",TT_Mile,"55902",-,-,-,0,TK_NotStart,09/02/2022,,09/02/2022,,"SI20TPM28A2-5 FS","SI20TPM28A2-5","SI20TPM28A6-20 FS,SI20TPM28A2-11 FS","SI20TPM28A6-20,SI20TPM28A2-11",79,,79,,18,,18,,48,2040,"HK1003 -Blackpoint D2 - Rev.0E DD30092021"
1-4867,SI20TPM28A6-20,"INSTALLATION OF CONNECTION MATERIAL IN CUSTOMER SITE TP-M28A",5121,"HK1003-Rev.0E-3",TT_Task,"55902",-,-,-,0,TK_NotStart,04/05/2022,,28/06/2022,,"SI20TPM28A2-10 FS,SI20TPM28A3-15 FS,SI20TPM28A2-11 FS,SI20TP-186& FS,SI20ULD6B15 SS","SI20TPM28A2-10,SI20TPM28A3-15,SI20TPM28A2-11,SI20TP-186&,SI20ULD6B15","SI20TPM28A6-25 FS,SI20TPM28A2-16 FS","SI20TPM28A6-25,SI20TPM28A2-16",91,,99,,21,,23,,62,2040,"HK1003 -Blackpoint D2 - Rev.0E DD30092021"
1-4868,SI20TPM28A2-11,"UPDATE OF TRANSITION PLAN TP-M28A",5121,"HK1003-Rev.0E-3",TT_Task,"55902",-,-,-,0,TK_NotStart,09/02/2022,,15/02/2022,,"SI20TPM28A2-10 FS","SI20TPM28A2-10","SI20TPM28A6-20 FS","SI20TPM28A6-20",79,,80,,18,,18,,48,2040,"HK1003 -Blackpoint D2 - Rev.0E DD30092021"
1-4869,SI20TPM28A2-16,"ALL RELEVANT PERMITS & LOTO AVAILABLE FROM CUSTOMER TP-M28A",5121,"HK1003-Rev.0E-3",TT_Mile,"55902",-,-,-,0,TK_NotStart,29/06/2022,,29/06/2022,,"SI20TPM28A6-20 FS","SI20TPM28A6-20","SI20TPM28A6-25 FS","SI20TPM28A6-25",99,,99,,23,,23,,71,2040,"HK1003 -Blackpoint D2 - Rev.0E DD30092021"
1-4870,SI20TPM28A8-26,"MEDIA  AVAILABLE TP-M28A",5121,"HK1003-Rev.0E-3",TT_Mile,"55902",-,-,-,0,TK_NotStart,15/03/2023,,15/03/2023,,"SI20TPM28A6-25 FS","SI20TPM28A6-25","SI20TPM28A8-30 FS","SI20TPM28A8-30",136,,136,,31,,31,,92,80,"HK1003 -Blackpoint D2 - Rev.0E DD30092021"
1-4871,SI20TPM29A8-30,"COMMISSIONING OF TP-M29A",5121,"HK1003-Rev.0E-3",TT_Task,"55902",-,-,-,0,TK_NotStart,15/03/2023,,21/03/2023,,"SI20TPM29A6-25 FS,SI20TPM29A8-26 FS,SI20LDK8B10 FS","SI20TPM29A6-25,SI20TPM29A8-26,SI20LDK8B10","SI20--P6-75 FS,SI20LDK8B25 FS","SI20--P6-75,SI20LDK8B25",136,,137,,31,,32,,92,80,"HK1003 -Blackpoint D2 - Rev.0E DD30092021"
1-4872,SI20TPM29A3-15,"MATERIAL FOR TP INTEGRATION ON SITE TP-M29A",5121,"HK1003-Rev.0E-3",TT_Mile,"55902",-,-,-,0,TK_NotStart,04/05/2022,,04/05/2022,,"SI20TPM29A2-5 FS","SI20TPM29A2-5","SI20TPM29A6-25 FS,SI20TPM29A6-20 FS","SI20TPM29A6-25,SI20TPM29A6-20",91,,91,,21,,21,,62,2040,"HK1003 -Blackpoint D2 - Rev.0E DD30092021"
1-4873,SI20TPM29A6-25,"TERMINATION OF TP-M29A",5121,"HK1003-Rev.0E-3",TT_Task,"55902",-,-,-,0,TK_NotStart,29/06/2022,,12/07/2022,,"SI20TPM29A3-15 FS,SI20TPM29A6-20 FS,SI20TPM29A2-16 FS","SI20TPM29A3-15,SI20TPM29A6-20,SI20TPM29A2-16","SI20TPM29A8-30 FS,SI20TPM29A8-26 FS","SI20TPM29A8-30,SI20TPM29A8-26",99,,101,,23,,23,,71,2040,"HK1003 -Blackpoint D2 - Rev.0E DD30092021"
1-4874,SI20TPM29A2-5,"TECHNICAL CLARIFICATION WITH CUSTOMER / DESIGN FOR CONNECTION OF TP-M29A",5121,"HK1003-Rev.0E-3",TT_Task,"55902",-,-,-,100,TK_Complete,11/04/2021,11/04/2021,08/05/2021,08/05/2021,"SI-----1-05 FS,SI--M--2D21 FS","SI-----1-05,SI--M--2D21","SI20TPM29A2-10 FS,SI20TPM29A3-15 FS,SI---2P2A10 FS","SI20TPM29A2-10,SI20TPM29A3-15,SI---2P2A10",36,36,40,40,8,8,9,9,8,,"HK1003 -Blackpoint D2 - Rev.0E DD30092021"
1-4875,SI20TPM29A2-10,"FINAL AGREEMENT WITH CUSTOMER / ACCESS TIME / REQUIREMENTS TO TP ALIGNED TP-M29A",5121,"HK1003-Rev.0E-3",TT_Mile,"55902",-,-,-,0,TK_NotStart,09/02/2022,,09/02/2022,,"SI20TPM29A2-5 FS","SI20TPM29A2-5","SI20TPM29A6-20 FS,SI20TPM29A2-11 FS","SI20TPM29A6-20,SI20TPM29A2-11",79,,79,,18,,18,,49,2040,"HK1003 -Blackpoint D2 - Rev.0E DD30092021"
1-4876,SI20TPM29A6-20,"INSTALLATION OF CONNECTION MATERIAL IN CUSTOMER SITE TP-M29A",5121,"HK1003-Rev.0E-3",TT_Task,"55902",-,-,-,0,TK_NotStart,04/05/2022,,28/06/2022,,"SI20TPM29A2-10 FS,SI20TPM29A3-15 FS,SI20TPM29A2-11 FS,SI20SD-110& SS,SI20TP-187& FS","SI20TPM29A2-10,SI20TPM29A3-15,SI20TPM29A2-11,SI20SD-110&,SI20TP-187&","SI20TPM29A6-25 FS,SI20TPM29A2-16 FS","SI20TPM29A6-25,SI20TPM29A2-16",91,,99,,21,,23,,62,2040,"HK1003 -Blackpoint D2 - Rev.0E DD30092021"
1-4877,SI20TPM29A2-11,"UPDATE OF TRANSITION PLAN TP-M29A",5121,"HK1003-Rev.0E-3",TT_Task,"55902",-,-,-,0,TK_NotStart,09/02/2022,,15/02/2022,,"SI20TPM29A2-10 FS","SI20TPM29A2-10","SI20TPM29A6-20 FS","SI20TPM29A6-20",79,,80,,18,,18,,49,2040,"HK1003 -Blackpoint D2 - Rev.0E DD30092021"
1-4878,SI20TPM29A2-16,"ALL RELEVANT PERMITS & LOTO AVAILABLE FROM CUSTOMER TP-M29A",5121,"HK1003-Rev.0E-3",TT_Mile,"55902",-,-,-,0,TK_NotStart,29/06/2022,,29/06/2022,,"SI20TPM29A6-20 FS","SI20TPM29A6-20","SI20TPM29A6-25 FS","SI20TPM29A6-25",99,,99,,23,,23,,71,2040,"HK1003 -Blackpoint D2 - Rev.0E DD30092021"
1-4879,SI20TPM29A8-26,"MEDIA  AVAILABLE TP-M29A",5121,"HK1003-Rev.0E-3",TT_Mile,"55902",-,-,-,0,TK_NotStart,15/03/2023,,15/03/2023,,"SI20TPM29A6-25 FS","SI20TPM29A6-25","SI20TPM29A8-30 FS","SI20TPM29A8-30",136,,136,,31,,31,,92,80,"HK1003 -Blackpoint D2 - Rev.0E DD30092021"
1-4880,SI20TPI13A8-30,"COMMISSIONING OF TP-I13",5121,"HK1003-Rev.0E-3",TT_Task,"55902",-,-,-,0,TK_NotStart,07/02/2023,,13/02/2023,,"SI20TPI13A6-25 FS,SI20TPI13A8-26 FS","SI20TPI13A6-25,SI20TPI13A8-26","SI20CJ-8-25 FS,SI20UBA7C-25 FS","SI20CJ-8-25,SI20UBA7C-25",131,,132,,30,,30,,90,72,"HK1003 -Blackpoint D2 - Rev.0E DD30092021"
1-4881,SI20TPI13A3-15,"MATERIAL FOR TP INTEGRATION ON SITE TP-I13",5121,"HK1003-Rev.0E-3",TT_Mile,"55902",-,-,-,0,TK_NotStart,04/05/2022,,04/05/2022,,"SI20TPI13A2-5 FS","SI20TPI13A2-5","SI20TPI13A6-25 FS,SI20TPI13A6-20 FS","SI20TPI13A6-25,SI20TPI13A6-20",91,,91,,21,,21,,62,1968,"HK1003 -Blackpoint D2 - Rev.0E DD30092021"
1-4882,SI20TPI13A6-25,"TERMINATION OF TP-I13",5121,"HK1003-Rev.0E-3",TT_Task,"55902",-,-,-,0,TK_NotStart,01/06/2022,,14/06/2022,,"SI20TPI13A3-15 FS,SI20TPI13A6-20 FS,SI20TPI13A2-16 FS","SI20TPI13A3-15,SI20TPI13A6-20,SI20TPI13A2-16","SI20TPI13A8-30 FS,SI20TPI13A8-26 FS","SI20TPI13A8-30,SI20TPI13A8-26",95,,97,,22,,22,,67,1968,"HK1003 -Blackpoint D2 - Rev.0E DD30092021"
1-4883,SI20TPI13A2-5,"TECHNICAL CLARIFICATION WITH CUSTOMER / DESIGN FOR CONNECTION OF TP-I13",5121,"HK1003-Rev.0E-3",TT_Task,"55902",-,-,-,100,TK_Complete,24/05/2021,24/05/2021,20/06/2021,20/06/2021,"SI-----1-05 FS","SI-----1-05","SI20TPI13A2-10 FS,SI20TPI13A3-15 FS","SI20TPI13A2-10,SI20TPI13A3-15",42,42,46,46,9,9,10,10,13,,"HK1003 -Blackpoint D2 - Rev.0E DD30092021"
1-4884,SI20TPI13A2-10,"FINAL AGREEMENT WITH CUSTOMER / ACCESS TIME / REQUIREMENTS TO TP ALIGNED TP-I13",5121,"HK1003-Rev.0E-3",TT_Mile,"55902",-,-,-,100,TK_Complete,21/06/2021,21/06/2021,21/06/2021,21/06/2021,"SI20TPI13A2-5 FS","SI20TPI13A2-5","SI20TPI13A6-20 FS,SI20TPI13A2-11 FS,SP20CJP2-70 FS","SI20TPI13A6-20,SI20TPI13A2-11,SP20CJP2-70",46,46,46,46,10,10,10,10,18,,"HK1003 -Blackpoint D2 - Rev.0E DD30092021"
1-4885,SI20TPI13A6-20,"INSTALLATION OF CONNECTION MATERIAL IN CUSTOMER SITE TP-I13",5121,"HK1003-Rev.0E-3",TT_Task,"55902",-,-,-,0,TK_NotStart,04/05/2022,,31/05/2022,,"SI20TPI13A2-10 FS,SI20TPI13A3-15 FS,SI20TPI13A2-11 FS,SI20UCA7-16 FS,SI20TP-231& FS,SI20TP-246& FS","SI20TPI13A2-10,SI20TPI13A3-15,SI20TPI13A2-11,SI20UCA7-16,SI20TP-231&,SI20TP-246&","SI20TPI13A6-25 FS,SI20TPI13A2-16 FS","SI20TPI13A6-25,SI20TPI13A2-16",91,,95,,21,,22,,62,1968,"HK1003 -Blackpoint D2 - Rev.0E DD30092021"
1-4886,SI20TPI13A2-11,"UPDATE OF TRANSITION PLAN TP-I13",5121,"HK1003-Rev.0E-3",TT_Task,"55902",-,-,-,0,TK_NotStart,09/02/2022,,15/02/2022,,"SI20TPI13A2-10 FS","SI20TPI13A2-10","SI20TPI13A6-20 FS","SI20TPI13A6-20",79,,80,,18,,18,,49,1968,"HK1003 -Blackpoint D2 - Rev.0E DD30092021"
1-4887,SI20TPI13A2-16,"ALL RELEVANT PERMITS & LOTO AVAILABLE FROM CUSTOMER TP-I13",5121,"HK1003-Rev.0E-3",TT_Mile,"55902",-,-,-,0,TK_NotStart,01/06/2022,,01/06/2022,,"SI20TPI13A6-20 FS","SI20TPI13A6-20","SI20TPI13A6-25 FS","SI20TPI13A6-25",95,,95,,22,,22,,67,1968,"HK1003 -Blackpoint D2 - Rev.0E DD30092021"
1-4888,SI20TPI13A8-26,"MEDIA  AVAILABLE TP-I13",5121,"HK1003-Rev.0E-3",TT_Mile,"55902",-,-,-,0,TK_NotStart,07/02/2023,,07/02/2023,,"SI20TPI13A6-25 FS","SI20TPI13A6-25","SI20TPI13A8-30 FS","SI20TPI13A8-30",131,,131,,30,,30,,90,72,"HK1003 -Blackpoint D2 - Rev.0E DD30092021"
1-4889,SI20TPF1A8-30,"COMMISSIONING OF TP-F1A",5121,"HK1003-Rev.0E-3",TT_Task,"55902",-,-,-,0,TK_NotStart,18/03/2023,,24/03/2023,,"SI20TPF1A6-25 FS,SI20TPF1A8-26 FS,SI20SGA8B26 FS,SI20SGA8B28 FS","SI20TPF1A6-25,SI20TPF1A8-26,SI20SGA8B26,SI20SGA8B28","SI20B--8-50 FS,SI20SGC8-75 FS,SI20SGC8-75 FF","SI20B--8-50,SI20SGC8-75,SI20SGC8-75",137,,137,,31,,32,,93,16,"HK1003 -Blackpoint D2 - Rev.0E DD30092021"
1-4890,SI20TPF1A3-15,"MATERIAL FOR TP INTEGRATION ON SITE TP-F1A",5121,"HK1003-Rev.0E-3",TT_Mile,"55902",-,-,-,0,TK_NotStart,04/05/2022,,04/05/2022,,"SI20TPF1A2-5 FS","SI20TPF1A2-5","SI20TPF1A6-25 FS,SI20TPF1A6-20 FS","SI20TPF1A6-25,SI20TPF1A6-20",91,,91,,21,,21,,62,1424,"HK1003 -Blackpoint D2 - Rev.0E DD30092021"
1-4891,SI20TPF1A6-25,"TERMINATION OF TP-F1A",5121,"HK1003-Rev.0E-3",TT_Task,"55902",-,-,-,0,TK_NotStart,01/06/2022,,14/06/2022,,"SI20TPF1A3-15 FS,SI20TPF1A6-20 FS,SI20TPF1A2-16 FS","SI20TPF1A3-15,SI20TPF1A6-20,SI20TPF1A2-16","SI20TPF1A8-30 FS,SI20TPF1A8-26 FS,SI-P222-133 FS,SI-P222-173 FS,SI-P222-135 FS","SI20TPF1A8-30,SI20TPF1A8-26,SI-P222-133,SI-P222-173,SI-P222-135",95,,97,,22,,22,,67,1424,"HK1003 -Blackpoint D2 - Rev.0E DD30092021"
1-4892,SI20TPF1A2-5,"TECHNICAL CLARIFICATION WITH CUSTOMER / DESIGN FOR CONNECTION OF TP-F1A",5121,"HK1003-Rev.0E-3",TT_Task,"55902",-,-,-,100,TK_Complete,11/04/2021,11/04/2021,08/05/2021,08/05/2021,"SI-----1-05 FS,SI--M--2D21 FS","SI-----1-05,SI--M--2D21","SI---1P2A530 FS,SI20TPF1A2-10 FS,SI20TPF1A3-15 FS,SI---2P2A10 FS,SI-P222-171 FS,SI---1P2A520 FS","SI---1P2A530,SI20TPF1A2-10,SI20TPF1A3-15,SI---2P2A10,SI-P222-171,SI---1P2A520",36,36,40,40,8,8,9,9,8,,"HK1003 -Blackpoint D2 - Rev.0E DD30092021"
1-4893,SI20TPF1A2-10,"FINAL AGREEMENT WITH CUSTOMER / ACCESS TIME / REQUIREMENTS TO TP ALIGNED TP-F1A",5121,"HK1003-Rev.0E-3",TT_Mile,"55902",-,-,-,0,TK_NotStart,09/02/2022,,09/02/2022,,"SI20TPF1A2-5 FS","SI20TPF1A2-5","SI20TPF1A6-20 FS,SI20TPF1A2-11 FS","SI20TPF1A6-20,SI20TPF1A2-11",79,,79,,18,,18,,49,2040,"HK1003 -Blackpoint D2 - Rev.0E DD30092021"
1-4894,SI20TPF1A6-20,"INSTALLATION OF CONNECTION MATERIAL IN CUSTOMER SITE TP-F1A",5121,"HK1003-Rev.0E-3",TT_Task,"55902",-,-,-,0,TK_NotStart,04/05/2022,,31/05/2022,,"SI20TPF1A2-10 FS,SI20TPF1A3-15 FS,SI20TPF1A2-11 FS,SI20SD-110& SS,SI20TP-190& FS,SI-P222-123 FS","SI20TPF1A2-10,SI20TPF1A3-15,SI20TPF1A2-11,SI20SD-110&,SI20TP-190&,SI-P222-123","SI20TPF1A6-25 FS,SI20TPF1A2-16 FS,SI-P222-133 FS,SI-P222-173 FS,SI-P222-135 FS","SI20TPF1A6-25,SI20TPF1A2-16,SI-P222-133,SI-P222-173,SI-P222-135",91,,95,,21,,22,,62,1424,"HK1003 -Blackpoint D2 - Rev.0E DD30092021"
1-4895,SI20TPF1A2-11,"UPDATE OF TRANSITION PLAN TP-F1A",5121,"HK1003-Rev.0E-3",TT_Task,"55902",-,-,-,0,TK_NotStart,09/02/2022,,15/02/2022,,"SI20TPF1A2-10 FS","SI20TPF1A2-10","SI20TPF1A6-20 FS","SI20TPF1A6-20",79,,80,,18,,18,,49,2040,"HK1003 -Blackpoint D2 - Rev.0E DD30092021"
1-4896,SI20TPF1A2-16,"ALL RELEVANT PERMITS & LOTO AVAILABLE FROM CUSTOMER TP-F1A",5121,"HK1003-Rev.0E-3",TT_Mile,"55902",-,-,-,0,TK_NotStart,01/06/2022,,01/06/2022,,"SI20TPF1A6-20 FS","SI20TPF1A6-20","SI20TPF1A6-25 FS","SI20TPF1A6-25",95,,95,,22,,22,,67,1424,"HK1003 -Blackpoint D2 - Rev.0E DD30092021"
1-4897,SI20TPF1A8-26,"MEDIA  AVAILABLE TP-F1A",5121,"HK1003-Rev.0E-3",TT_Mile,"55902",-,-,-,0,TK_NotStart,18/03/2023,,18/03/2023,,"SI20TPF1A6-25 FS","SI20TPF1A6-25","SI20TPF1A8-30 FS","SI20TPF1A8-30",137,,137,,31,,31,,93,16,"HK1003 -Blackpoint D2 - Rev.0E DD30092021"
1-4898,SI20TPI1A8-30,"COMMISSIONING OF TP-I1",5121,"HK1003-Rev.0E-3",TT_Task,"55902",-,-,-,0,TK_NotStart,07/02/2023,,13/02/2023,,"SI20TPI1A6-25 FS,SI20TPI1A8-26 FS","SI20TPI1A6-25,SI20TPI1A8-26","SI20CJ-8-25 FS,SI20UBA7C-25 FS","SI20CJ-8-25,SI20UBA7C-25",131,,132,,30,,30,,90,72,"HK1003 -Blackpoint D2 - Rev.0E DD30092021"
1-4899,SI20TPI1A3-15,"MATERIAL FOR TP INTEGRATION ON SITE TP-I1",5121,"HK1003-Rev.0E-3",TT_Mile,"55902",-,-,-,0,TK_NotStart,04/05/2022,,04/05/2022,,"SI20TPI1A2-5 FS","SI20TPI1A2-5","SI20TPI1A6-25 FS,SI20TPI1A6-20 FS","SI20TPI1A6-25,SI20TPI1A6-20",91,,91,,21,,21,,62,1968,"HK1003 -Blackpoint D2 - Rev.0E DD30092021"
1-4900,SI20TPI1A6-25,"TERMINATION OF TP-I1",5121,"HK1003-Rev.0E-3",TT_Task,"55902",-,-,-,0,TK_NotStart,01/06/2022,,14/06/2022,,"SI20TPI1A3-15 FS,SI20TPI1A6-20 FS,SI20TPI1A2-16 FS","SI20TPI1A3-15,SI20TPI1A6-20,SI20TPI1A2-16","SI20TPI1A8-30 FS,SI20TPI1A8-26 FS","SI20TPI1A8-30,SI20TPI1A8-26",95,,97,,22,,22,,67,1968,"HK1003 -Blackpoint D2 - Rev.0E DD30092021"
1-4901,SI20TPI1A2-5,"TECHNICAL CLARIFICATION WITH CUSTOMER / DESIGN FOR CONNECTION OF TP-I1",5121,"HK1003-Rev.0E-3",TT_Task,"55902",-,-,-,100,TK_Complete,24/05/2021,24/05/2021,20/06/2021,20/06/2021,"SI-----1-05 FS","SI-----1-05","SI20TPI1A2-10 FS,SI20TPI1A3-15 FS","SI20TPI1A2-10,SI20TPI1A3-15",42,42,46,46,9,9,10,10,13,,"HK1003 -Blackpoint D2 - Rev.0E DD30092021"
1-4902,SI20TPI1A2-10,"FINAL AGREEMENT WITH CUSTOMER / ACCESS TIME / REQUIREMENTS TO TP ALIGNED TP-I1",5121,"HK1003-Rev.0E-3",TT_Mile,"55902",-,-,-,100,TK_Complete,21/06/2021,21/06/2021,21/06/2021,21/06/2021,"SI20TPI1A2-5 FS","SI20TPI1A2-5","SI20TPI1A6-20 FS,SI20TPI1A2-11 FS,SP20CJP2-70 FS","SI20TPI1A6-20,SI20TPI1A2-11,SP20CJP2-70",46,46,46,46,10,10,10,10,18,,"HK1003 -Blackpoint D2 - Rev.0E DD30092021"
1-4903,SI20TPI1A6-20,"INSTALLATION OF CONNECTION MATERIAL IN CUSTOMER SITE TP-I1",5121,"HK1003-Rev.0E-3",TT_Task,"55902",-,-,-,0,TK_NotStart,04/05/2022,,31/05/2022,,"SI20TPI1A2-10 FS,SI20TPI1A3-15 FS,SI20TPI1A2-11 FS,SI20UCA7-16 FS,SI20TP-232& FS","SI20TPI1A2-10,SI20TPI1A3-15,SI20TPI1A2-11,SI20UCA7-16,SI20TP-232&","SI20TPI1A6-25 FS,SI20TPI1A2-16 FS","SI20TPI1A6-25,SI20TPI1A2-16",91,,95,,21,,22,,62,1968,"HK1003 -Blackpoint D2 - Rev.0E DD30092021"
1-4904,SI20TPI1A2-11,"UPDATE OF TRANSITION PLAN TP-I1",5121,"HK1003-Rev.0E-3",TT_Task,"55902",-,-,-,0,TK_NotStart,09/02/2022,,15/02/2022,,"SI20TPI1A2-10 FS","SI20TPI1A2-10","SI20TPI1A6-20 FS","SI20TPI1A6-20",79,,80,,18,,18,,49,1968,"HK1003 -Blackpoint D2 - Rev.0E DD30092021"
1-4905,SI20TPI1A2-16,"ALL RELEVANT PERMITS & LOTO AVAILABLE FROM CUSTOMER TP-I1",5121,"HK1003-Rev.0E-3",TT_Mile,"55902",-,-,-,0,TK_NotStart,01/06/2022,,01/06/2022,,"SI20TPI1A6-20 FS","SI20TPI1A6-20","SI20TPI1A6-25 FS","SI20TPI1A6-25",95,,95,,22,,22,,67,1968,"HK1003 -Blackpoint D2 - Rev.0E DD30092021"
1-4906,SI20TPI1A8-26,"MEDIA  AVAILABLE TP-I1",5121,"HK1003-Rev.0E-3",TT_Mile,"55902",-,-,-,0,TK_NotStart,07/02/2023,,07/02/2023,,"SI20TPI1A6-25 FS","SI20TPI1A6-25","SI20TPI1A8-30 FS","SI20TPI1A8-30",131,,131,,30,,30,,90,72,"HK1003 -Blackpoint D2 - Rev.0E DD30092021"
1-4907,SI20TPF1B8-30,"COMMISSIONING OF TP-F1B",5121,"HK1003-Rev.0E-3",TT_Task,"55902",-,-,-,0,TK_NotStart,18/03/2023,,24/03/2023,,"SI20TPF1B6-25 FS,SI20TPF1B8-26 FS,SI20SGA8B26 FS,SI20SGA8B28 FS","SI20TPF1B6-25,SI20TPF1B8-26,SI20SGA8B26,SI20SGA8B28","SI20B--8-50 FS,SI20SGC8-75 FS","SI20B--8-50,SI20SGC8-75",137,,137,,31,,32,,93,16,"HK1003 -Blackpoint D2 - Rev.0E DD30092021"
1-4908,SI20TPF1B3-15,"MATERIAL FOR TP INTEGRATION ON SITE TP-F1B",5121,"HK1003-Rev.0E-3",TT_Mile,"55902",-,-,-,0,TK_NotStart,04/05/2022,,04/05/2022,,"SI20TPF1B2-5 FS","SI20TPF1B2-5","SI20TPF1B6-25 FS,SI20TPF1B6-20 FS","SI20TPF1B6-25,SI20TPF1B6-20",91,,91,,21,,21,,62,1424,"HK1003 -Blackpoint D2 - Rev.0E DD30092021"
1-4909,SI20TPF1B6-25,"TERMINATION OF TP-F1B",5121,"HK1003-Rev.0E-3",TT_Task,"55902",-,-,-,0,TK_NotStart,01/06/2022,,14/06/2022,,"SI20TPF1B3-15 FS,SI20TPF1B6-20 FS,SI20TPF1B2-16 FS","SI20TPF1B3-15,SI20TPF1B6-20,SI20TPF1B2-16","SI20TPF1B8-30 FS,SI20TPF1B8-26 FS,SI-P222-133 FS,SI-P222-173 FS,SI-P222-135 FS","SI20TPF1B8-30,SI20TPF1B8-26,SI-P222-133,SI-P222-173,SI-P222-135",95,,97,,22,,22,,67,1424,"HK1003 -Blackpoint D2 - Rev.0E DD30092021"
1-4910,SI20TPF1B2-5,"TECHNICAL CLARIFICATION WITH CUSTOMER / DESIGN FOR CONNECTION OF TP-F1B",5121,"HK1003-Rev.0E-3",TT_Task,"55902",-,-,-,100,TK_Complete,07/05/2021,07/05/2021,03/06/2021,03/06/2021,"SI-----1-05 FS","SI-----1-05","SI---1P2A530 FS,SI20TPF1B2-10 FS,SI20TPF1B3-15 FS,SI---2P2A10 FS,SI-P222-171 FS,SI---1P2A520 FS","SI---1P2A530,SI20TPF1B2-10,SI20TPF1B3-15,SI---2P2A10,SI-P222-171,SI---1P2A520",39,39,43,43,9,9,10,10,11,,"HK1003 -Blackpoint D2 - Rev.0E DD30092021"
1-4911,SI20TPF1B2-10,"FINAL AGREEMENT WITH CUSTOMER / ACCESS TIME / REQUIREMENTS TO TP ALIGNED TP-F1B",5121,"HK1003-Rev.0E-3",TT_Mile,"55902",-,-,-,0,TK_NotStart,09/02/2022,,09/02/2022,,"SI20TPF1B2-5 FS","SI20TPF1B2-5","SI20TPF1B6-20 FS,SI20TPF1B2-11 FS","SI20TPF1B6-20,SI20TPF1B2-11",79,,79,,18,,18,,49,1424,"HK1003 -Blackpoint D2 - Rev.0E DD30092021"
1-4912,SI20TPF1B6-20,"INSTALLATION OF CONNECTION MATERIAL IN CUSTOMER SITE TP-F1B",5121,"HK1003-Rev.0E-3",TT_Task,"55902",-,-,-,0,TK_NotStart,04/05/2022,,31/05/2022,,"SI20TPF1B2-10 FS,SI20TPF1B3-15 FS,SI20TPF1B2-11 FS,SI20SD-110& SS,SI20TP-191& FS,SI-P222-123 FS","SI20TPF1B2-10,SI20TPF1B3-15,SI20TPF1B2-11,SI20SD-110&,SI20TP-191&,SI-P222-123","SI20TPF1B6-25 FS,SI20TPF1B2-16 FS,SI-P222-133 FS,SI-P222-173 FS,SI-P222-135 FS","SI20TPF1B6-25,SI20TPF1B2-16,SI-P222-133,SI-P222-173,SI-P222-135",91,,95,,21,,22,,62,1424,"HK1003 -Blackpoint D2 - Rev.0E DD30092021"
1-4913,SI20TPF1B2-11,"UPDATE OF TRANSITION PLAN TP-F1B",5121,"HK1003-Rev.0E-3",TT_Task,"55902",-,-,-,0,TK_NotStart,09/02/2022,,15/02/2022,,"SI20TPF1B2-10 FS","SI20TPF1B2-10","SI20TPF1B6-20 FS","SI20TPF1B6-20",79,,80,,18,,18,,49,1424,"HK1003 -Blackpoint D2 - Rev.0E DD30092021"
1-4914,SI20TPF1B2-16,"ALL RELEVANT PERMITS & LOTO AVAILABLE FROM CUSTOMER TP-F1B",5121,"HK1003-Rev.0E-3",TT_Mile,"55902",-,-,-,0,TK_NotStart,01/06/2022,,01/06/2022,,"SI20TPF1B6-20 FS","SI20TPF1B6-20","SI20TPF1B6-25 FS","SI20TPF1B6-25",95,,95,,22,,22,,67,1424,"HK1003 -Blackpoint D2 - Rev.0E DD30092021"
1-4915,SI20TPF1B8-26,"MEDIA  AVAILABLE TP-F1B",5121,"HK1003-Rev.0E-3",TT_Mile,"55902",-,-,-,0,TK_NotStart,18/03/2023,,18/03/2023,,"SI20TPF1B6-25 FS","SI20TPF1B6-25","SI20TPF1B8-30 FS","SI20TPF1B8-30",137,,137,,31,,31,,93,16,"HK1003 -Blackpoint D2 - Rev.0E DD30092021"
1-4916,SI20TPF1C8-30,"COMMISSIONING OF TP-F1C",5121,"HK1003-Rev.0E-3",TT_Task,"55902",-,-,-,0,TK_NotStart,18/03/2023,,24/03/2023,,"SI20TPF1C6-25 FS,SI20TPF1C8-26 FS,SI20SGA8B26 FS,SI20SGA8B28 FS","SI20TPF1C6-25,SI20TPF1C8-26,SI20SGA8B26,SI20SGA8B28","SI20B--8-50 FS,SI20SGC8-75 FS","SI20B--8-50,SI20SGC8-75",137,,137,,31,,32,,93,16,"HK1003 -Blackpoint D2 - Rev.0E DD30092021"
1-4917,SI20TPF1C3-15,"MATERIAL FOR TP INTEGRATION ON SITE TP-F1C",5121,"HK1003-Rev.0E-3",TT_Mile,"55902",-,-,-,0,TK_NotStart,04/05/2022,,04/05/2022,,"SI20TPF1C2-5 FS","SI20TPF1C2-5","SI20TPF1C6-25 FS,SI20TPF1C6-20 FS","SI20TPF1C6-25,SI20TPF1C6-20",91,,91,,21,,21,,62,1424,"HK1003 -Blackpoint D2 - Rev.0E DD30092021"
1-4918,SI20TPF1C6-25,"TERMINATION OF TP-F1C",5121,"HK1003-Rev.0E-3",TT_Task,"55902",-,-,-,0,TK_NotStart,01/06/2022,,14/06/2022,,"SI20TPF1C3-15 FS,SI20TPF1C6-20 FS,SI20TPF1C2-16 FS","SI20TPF1C3-15,SI20TPF1C6-20,SI20TPF1C2-16","SI20TPF1C8-30 FS,SI20TPF1C8-26 FS,SI-P222-133 FS,SI-P222-173 FS,SI-P222-135 FS","SI20TPF1C8-30,SI20TPF1C8-26,SI-P222-133,SI-P222-173,SI-P222-135",95,,97,,22,,22,,67,1424,"HK1003 -Blackpoint D2 - Rev.0E DD30092021"
1-4919,SI20TPF1C2-5,"TECHNICAL CLARIFICATION WITH CUSTOMER / DESIGN FOR CONNECTION OF TP-F1C",5121,"HK1003-Rev.0E-3",TT_Task,"55902",-,-,-,100,TK_Complete,07/05/2021,07/05/2021,03/06/2021,03/06/2021,"SI-----1-05 FS","SI-----1-05","SI---1P2A530 FS,SI20TPF1C2-10 FS,SI20TPF1C3-15 FS,SI---2P2A10 FS,SI-P222-171 FS,SI---1P2A520 FS","SI---1P2A530,SI20TPF1C2-10,SI20TPF1C3-15,SI---2P2A10,SI-P222-171,SI---1P2A520",39,39,43,43,9,9,10,10,11,,"HK1003 -Blackpoint D2 - Rev.0E DD30092021"
1-4920,SI20TPF1C2-10,"FINAL AGREEMENT WITH CUSTOMER / ACCESS TIME / REQUIREMENTS TO TP ALIGNED TP-F1C",5121,"HK1003-Rev.0E-3",TT_Mile,"55902",-,-,-,0,TK_NotStart,09/02/2022,,09/02/2022,,"SI20TPF1C2-5 FS","SI20TPF1C2-5","SI20TPF1C6-20 FS,SI20TPF1C2-11 FS","SI20TPF1C6-20,SI20TPF1C2-11",79,,79,,18,,18,,49,1424,"HK1003 -Blackpoint D2 - Rev.0E DD30092021"
1-4921,SI20TPF1C6-20,"INSTALLATION OF CONNECTION MATERIAL IN CUSTOMER SITE TP-F1C",5121,"HK1003-Rev.0E-3",TT_Task,"55902",-,-,-,0,TK_NotStart,04/05/2022,,31/05/2022,,"SI20TPF1C2-10 FS,SI20TPF1C3-15 FS,SI20TPF1C2-11 FS,SI20SD-110& SS,SI20TP-192& FS,SI-P222-123 FS","SI20TPF1C2-10,SI20TPF1C3-15,SI20TPF1C2-11,SI20SD-110&,SI20TP-192&,SI-P222-123","SI20TPF1C6-25 FS,SI20TPF1C2-16 FS,SI-P222-133 FS,SI-P222-173 FS,SI-P222-135 FS","SI20TPF1C6-25,SI20TPF1C2-16,SI-P222-133,SI-P222-173,SI-P222-135",91,,95,,21,,22,,62,1424,"HK1003 -Blackpoint D2 - Rev.0E DD30092021"
1-4922,SI20TPF1C2-11,"UPDATE OF TRANSITION PLAN TP-F1C",5121,"HK1003-Rev.0E-3",TT_Task,"55902",-,-,-,0,TK_NotStart,09/02/2022,,15/02/2022,,"SI20TPF1C2-10 FS","SI20TPF1C2-10","SI20TPF1C6-20 FS","SI20TPF1C6-20",79,,80,,18,,18,,49,1424,"HK1003 -Blackpoint D2 - Rev.0E DD30092021"
1-4923,SI20TPF1C2-16,"ALL RELEVANT PERMITS & LOTO AVAILABLE FROM CUSTOMER TP-F1C",5121,"HK1003-Rev.0E-3",TT_Mile,"55902",-,-,-,0,TK_NotStart,01/06/2022,,01/06/2022,,"SI20TPF1C6-20 FS","SI20TPF1C6-20","SI20TPF1C6-25 FS","SI20TPF1C6-25",95,,95,,22,,22,,67,1424,"HK1003 -Blackpoint D2 - Rev.0E DD30092021"
1-4924,SI20TPF1C8-26,"MEDIA  AVAILABLE TP-F1C",5121,"HK1003-Rev.0E-3",TT_Mile,"55902",-,-,-,0,TK_NotStart,18/03/2023,,18/03/2023,,"SI20TPF1C6-25 FS","SI20TPF1C6-25","SI20TPF1C8-30 FS","SI20TPF1C8-30",137,,137,,31,,31,,93,16,"HK1003 -Blackpoint D2 - Rev.0E DD30092021"
1-4925,SI20TPI4A8-30,"COMMISSIONING OF TP-I4",5121,"HK1003-Rev.0E-3",TT_Task,"55902",-,-,-,0,TK_NotStart,07/02/2023,,13/02/2023,,"SI20TPI4A7-25 FS,SI20TPI4A8-26 FS","SI20TPI4A7-25,SI20TPI4A8-26","SI20CJ-8-25 FS,SI20UBA7C-25 FS","SI20CJ-8-25,SI20UBA7C-25",131,,132,,30,,30,,90,72,"HK1003 -Blackpoint D2 - Rev.0E DD30092021"
1-4926,SI20TPI4A3-15,"MATERIAL FOR TP INTEGRATION ON SITE TP-I4",5121,"HK1003-Rev.0E-3",TT_Mile,"55902",-,-,-,0,TK_NotStart,04/05/2022,,04/05/2022,,"SI20TPI4A2-5 FS","SI20TPI4A2-5","SI20TPI4A7-25 FS,SI20TPI4A7-20 FS","SI20TPI4A7-25,SI20TPI4A7-20",91,,91,,21,,21,,62,1968,"HK1003 -Blackpoint D2 - Rev.0E DD30092021"
1-4927,SI20TPI4A7-25,"TERMINATION OF TP-I4",5121,"HK1003-Rev.0E-3",TT_Task,"55902",-,-,-,0,TK_NotStart,01/06/2022,,14/06/2022,,"SI20TPI4A3-15 FS,SI20TPI4A7-20 FS,SI20TPI4A2-16 FS","SI20TPI4A3-15,SI20TPI4A7-20,SI20TPI4A2-16","SI20TPI4A8-30 FS,SI20TPI4A8-26 FS","SI20TPI4A8-30,SI20TPI4A8-26",95,,97,,22,,22,,67,1968,"HK1003 -Blackpoint D2 - Rev.0E DD30092021"
1-4928,SI20TPI4A2-5,"TECHNICAL CLARIFICATION WITH CUSTOMER / DESIGN FOR CONNECTION OF TP-I4",5121,"HK1003-Rev.0E-3",TT_Task,"55902",-,-,-,100,TK_Complete,24/05/2021,24/05/2021,20/06/2021,20/06/2021,"SI-----1-05 FS","SI-----1-05","SI20TPI4A2-10 FS,SI20TPI4A3-15 FS","SI20TPI4A2-10,SI20TPI4A3-15",42,42,46,46,9,9,10,10,13,,"HK1003 -Blackpoint D2 - Rev.0E DD30092021"
1-4929,SI20TPI4A2-10,"FINAL AGREEMENT WITH CUSTOMER / ACCESS TIME / REQUIREMENTS TO TP ALIGNED TP-I4",5121,"HK1003-Rev.0E-3",TT_Mile,"55902",-,-,-,100,TK_Complete,21/06/2021,21/06/2021,21/06/2021,21/06/2021,"SI20TPI4A2-5 FS","SI20TPI4A2-5","SI20TPI4A7-20 FS,SI20TPI4A2-11 FS,SP20CJP2-70 FS","SI20TPI4A7-20,SI20TPI4A2-11,SP20CJP2-70",46,46,46,46,10,10,10,10,18,,"HK1003 -Blackpoint D2 - Rev.0E DD30092021"
1-4930,SI20TPI4A7-20,"INSTALLATION OF CONNECTION MATERIAL IN CUSTOMER SITE TP-I4",5121,"HK1003-Rev.0E-3",TT_Task,"55902",-,-,-,0,TK_NotStart,04/05/2022,,31/05/2022,,"SI20TPI4A2-10 FS,SI20TPI4A3-15 FS,SI20TPI4A2-11 FS,SI20UCA7-16 FS,SI20TP-233& FS","SI20TPI4A2-10,SI20TPI4A3-15,SI20TPI4A2-11,SI20UCA7-16,SI20TP-233&","SI20TPI4A7-25 FS,SI20TPI4A2-16 FS","SI20TPI4A7-25,SI20TPI4A2-16",91,,95,,21,,22,,62,1968,"HK1003 -Blackpoint D2 - Rev.0E DD30092021"
1-4931,SI20TPI4A2-11,"UPDATE OF TRANSITION PLAN TP-I4",5121,"HK1003-Rev.0E-3",TT_Task,"55902",-,-,-,0,TK_NotStart,09/02/2022,,15/02/2022,,"SI20TPI4A2-10 FS","SI20TPI4A2-10","SI20TPI4A7-20 FS","SI20TPI4A7-20",79,,80,,18,,18,,49,1968,"HK1003 -Blackpoint D2 - Rev.0E DD30092021"
1-4932,SI20TPI4A2-16,"ALL RELEVANT PERMITS & LOTO AVAILABLE FROM CUSTOMER TP-I4",5121,"HK1003-Rev.0E-3",TT_Mile,"55902",-,-,-,0,TK_NotStart,01/06/2022,,01/06/2022,,"SI20TPI4A7-20 FS","SI20TPI4A7-20","SI20TPI4A7-25 FS","SI20TPI4A7-25",95,,95,,22,,22,,67,1968,"HK1003 -Blackpoint D2 - Rev.0E DD30092021"
1-4933,SI20TPI4A8-26,"MEDIA  AVAILABLE TP-I4",5121,"HK1003-Rev.0E-3",TT_Mile,"55902",-,-,-,0,TK_NotStart,07/02/2023,,07/02/2023,,"SI20TPI4A7-25 FS","SI20TPI4A7-25","SI20TPI4A8-30 FS","SI20TPI4A8-30",131,,131,,30,,30,,90,72,"HK1003 -Blackpoint D2 - Rev.0E DD30092021"
1-4934,SI20TPF2A8-30,"COMMISSIONING OF TP-F2A",5121,"HK1003-Rev.0E-3",TT_Task,"55902",-,-,-,0,TK_NotStart,18/03/2023,,24/03/2023,,"SI20TPF2A6-25 FS,SI20TPF2A8-26 FS,SI20SGA8B26 FS,SI20SGA8B28 FS","SI20TPF2A6-25,SI20TPF2A8-26,SI20SGA8B26,SI20SGA8B28","SI20B--8-50 FS,SI20SGC8-75 FS","SI20B--8-50,SI20SGC8-75",137,,137,,31,,32,,93,16,"HK1003 -Blackpoint D2 - Rev.0E DD30092021"
1-4935,SI20TPF2A3-15,"MATERIAL FOR TP INTEGRATION ON SITE TP-F2A",5121,"HK1003-Rev.0E-3",TT_Mile,"55902",-,-,-,0,TK_NotStart,04/05/2022,,04/05/2022,,"SI20TPF2A2-5 FS","SI20TPF2A2-5","SI20TPF2A6-25 FS,SI20TPF2A6-20 FS","SI20TPF2A6-25,SI20TPF2A6-20",91,,91,,21,,21,,62,2224,"HK1003 -Blackpoint D2 - Rev.0E DD30092021"
1-4936,SI20TPF2A6-25,"TERMINATION OF TP-F2A",5121,"HK1003-Rev.0E-3",TT_Task,"55902",-,-,-,0,TK_NotStart,01/06/2022,,14/06/2022,,"SI20TPF2A3-15 FS,SI20TPF2A6-20 FS,SI20TPF2A2-16 FS","SI20TPF2A3-15,SI20TPF2A6-20,SI20TPF2A2-16","SI20TPF2A8-30 FS,SI20TPF2A8-26 FS","SI20TPF2A8-30,SI20TPF2A8-26",95,,97,,22,,22,,67,2224,"HK1003 -Blackpoint D2 - Rev.0E DD30092021"
1-4937,SI20TPF2A2-5,"TECHNICAL CLARIFICATION WITH CUSTOMER / DESIGN FOR CONNECTION OF TP-F2A",5121,"HK1003-Rev.0E-3",TT_Task,"55902",-,-,-,100,TK_Complete,07/05/2021,07/05/2021,03/06/2021,03/06/2021,"SI-----1-05 FS","SI-----1-05","SI---1P2A530 FS,SI20TPF2A2-10 FS,SI20TPF2A3-15 FS,SI---2P2A10 FS,SI---1P2A520 FS","SI---1P2A530,SI20TPF2A2-10,SI20TPF2A3-15,SI---2P2A10,SI---1P2A520",39,39,43,43,9,9,10,10,11,,"HK1003 -Blackpoint D2 - Rev.0E DD30092021"
1-4938,SI20TPF2A2-10,"FINAL AGREEMENT WITH CUSTOMER / ACCESS TIME / REQUIREMENTS TO TP ALIGNED TP-F2A",5121,"HK1003-Rev.0E-3",TT_Mile,"55902",-,-,-,0,TK_NotStart,09/02/2022,,09/02/2022,,"SI20TPF2A2-5 FS","SI20TPF2A2-5","SI20TPF2A6-20 FS,SI20TPF2A2-11 FS","SI20TPF2A6-20,SI20TPF2A2-11",79,,79,,18,,18,,49,2224,"HK1003 -Blackpoint D2 - Rev.0E DD30092021"
1-4939,SI20TPF2A6-20,"INSTALLATION OF CONNECTION MATERIAL IN CUSTOMER SITE TP-F2A",5121,"HK1003-Rev.0E-3",TT_Task,"55902",-,-,-,0,TK_NotStart,04/05/2022,,31/05/2022,,"SI20TPF2A2-10 FS,SI20TPF2A3-15 FS,SI20TPF2A2-11 FS,SI20SD-110& SS,SI20TP-193& FS","SI20TPF2A2-10,SI20TPF2A3-15,SI20TPF2A2-11,SI20SD-110&,SI20TP-193&","SI20TPF2A6-25 FS,SI20TPF2A2-16 FS","SI20TPF2A6-25,SI20TPF2A2-16",91,,95,,21,,22,,62,2224,"HK1003 -Blackpoint D2 - Rev.0E DD30092021"
1-4940,SI20TPF2A2-11,"UPDATE OF TRANSITION PLAN TP-F2A",5121,"HK1003-Rev.0E-3",TT_Task,"55902",-,-,-,0,TK_NotStart,09/02/2022,,15/02/2022,,"SI20TPF2A2-10 FS","SI20TPF2A2-10","SI20TPF2A6-20 FS","SI20TPF2A6-20",79,,80,,18,,18,,49,2224,"HK1003 -Blackpoint D2 - Rev.0E DD30092021"
1-4941,SI20TPF2A2-16,"ALL RELEVANT PERMITS & LOTO AVAILABLE FROM CUSTOMER TP-F2A",5121,"HK1003-Rev.0E-3",TT_Mile,"55902",-,-,-,0,TK_NotStart,01/06/2022,,01/06/2022,,"SI20TPF2A6-20 FS","SI20TPF2A6-20","SI20TPF2A6-25 FS","SI20TPF2A6-25",95,,95,,22,,22,,67,2224,"HK1003 -Blackpoint D2 - Rev.0E DD30092021"
1-4942,SI20TPF2A8-26,"MEDIA  AVAILABLE TP-F2A",5121,"HK1003-Rev.0E-3",TT_Mile,"55902",-,-,-,0,TK_NotStart,18/03/2023,,18/03/2023,,"SI20TPF2A6-25 FS","SI20TPF2A6-25","SI20TPF2A8-30 FS","SI20TPF2A8-30",137,,137,,31,,31,,93,16,"HK1003 -Blackpoint D2 - Rev.0E DD30092021"
1-4943,SI20TPI5A8-30,"COMMISSIONING OF TP-I5",5121,"HK1003-Rev.0E-3",TT_Task,"55902",-,-,-,0,TK_NotStart,07/02/2023,,13/02/2023,,"SI20TPI5A7-25 FS,SI20TPI5A8-26 FS","SI20TPI5A7-25,SI20TPI5A8-26","SI20CJ-8-25 FS,SI20UBA7C-25 FS","SI20CJ-8-25,SI20UBA7C-25",131,,132,,30,,30,,90,72,"HK1003 -Blackpoint D2 - Rev.0E DD30092021"
1-4944,SI20TPI5A3-15,"MATERIAL FOR TP INTEGRATION ON SITE TP-I5",5121,"HK1003-Rev.0E-3",TT_Mile,"55902",-,-,-,0,TK_NotStart,04/05/2022,,04/05/2022,,"SI20TPI5A2-5 FS","SI20TPI5A2-5","SI20TPI5A7-25 FS,SI20TPI5A7-20 FS","SI20TPI5A7-25,SI20TPI5A7-20",91,,91,,21,,21,,62,1968,"HK1003 -Blackpoint D2 - Rev.0E DD30092021"
1-4945,SI20TPI5A7-25,"TERMINATION OF TP-I5",5121,"HK1003-Rev.0E-3",TT_Task,"55902",-,-,-,0,TK_NotStart,01/06/2022,,14/06/2022,,"SI20TPI5A3-15 FS,SI20TPI5A7-20 FS,SI20TPI5A2-16 FS","SI20TPI5A3-15,SI20TPI5A7-20,SI20TPI5A2-16","SI20TPI5A8-30 FS,SI20TPI5A8-26 FS","SI20TPI5A8-30,SI20TPI5A8-26",95,,97,,22,,22,,67,1968,"HK1003 -Blackpoint D2 - Rev.0E DD30092021"
1-4946,SI20TPI5A2-5,"TECHNICAL CLARIFICATION WITH CUSTOMER / DESIGN FOR CONNECTION OF TP-I5",5121,"HK1003-Rev.0E-3",TT_Task,"55902",-,-,-,100,TK_Complete,24/05/2021,24/05/2021,20/06/2021,20/06/2021,"SI-----1-05 FS","SI-----1-05","SI20TPI5A2-10 FS,SI20TPI5A3-15 FS","SI20TPI5A2-10,SI20TPI5A3-15",42,42,46,46,9,9,10,10,13,,"HK1003 -Blackpoint D2 - Rev.0E DD30092021"
1-4947,SI20TPI5A2-10,"FINAL AGREEMENT WITH CUSTOMER / ACCESS TIME / REQUIREMENTS TO TP ALIGNED TP-I5",5121,"HK1003-Rev.0E-3",TT_Mile,"55902",-,-,-,100,TK_Complete,21/06/2021,21/06/2021,21/06/2021,21/06/2021,"SI20TPI5A2-5 FS","SI20TPI5A2-5","SI20TPI5A7-20 FS,SI20TPI5A2-11 FS,SP20CJP2-70 FS","SI20TPI5A7-20,SI20TPI5A2-11,SP20CJP2-70",46,46,46,46,10,10,10,10,18,,"HK1003 -Blackpoint D2 - Rev.0E DD30092021"
1-4948,SI20TPI5A7-20,"INSTALLATION OF CONNECTION MATERIAL IN CUSTOMER SITE TP-I5",5121,"HK1003-Rev.0E-3",TT_Task,"55902",-,-,-,0,TK_NotStart,04/05/2022,,31/05/2022,,"SI20TPI5A2-10 FS,SI20TPI5A3-15 FS,SI20TPI5A2-11 FS,SI20UCA7-16 FS,SI20TP-234& FS","SI20TPI5A2-10,SI20TPI5A3-15,SI20TPI5A2-11,SI20UCA7-16,SI20TP-234&","SI20TPI5A7-25 FS,SI20TPI5A2-16 FS","SI20TPI5A7-25,SI20TPI5A2-16",91,,95,,21,,22,,62,1968,"HK1003 -Blackpoint D2 - Rev.0E DD30092021"
1-4949,SI20TPI5A2-11,"UPDATE OF TRANSITION PLAN TP-I5",5121,"HK1003-Rev.0E-3",TT_Task,"55902",-,-,-,0,TK_NotStart,09/02/2022,,15/02/2022,,"SI20TPI5A2-10 FS","SI20TPI5A2-10","SI20TPI5A7-20 FS","SI20TPI5A7-20",79,,80,,18,,18,,49,1968,"HK1003 -Blackpoint D2 - Rev.0E DD30092021"
1-4950,SI20TPI5A2-16,"ALL RELEVANT PERMITS & LOTO AVAILABLE FROM CUSTOMER TP-I5",5121,"HK1003-Rev.0E-3",TT_Mile,"55902",-,-,-,0,TK_NotStart,01/06/2022,,01/06/2022,,"SI20TPI5A7-20 FS","SI20TPI5A7-20","SI20TPI5A7-25 FS","SI20TPI5A7-25",95,,95,,22,,22,,67,1968,"HK1003 -Blackpoint D2 - Rev.0E DD30092021"
1-4951,SI20TPI5A8-26,"MEDIA  AVAILABLE TP-I5",5121,"HK1003-Rev.0E-3",TT_Mile,"55902",-,-,-,0,TK_NotStart,07/02/2023,,07/02/2023,,"SI20TPI5A7-25 FS","SI20TPI5A7-25","SI20TPI5A8-30 FS","SI20TPI5A8-30",131,,131,,30,,30,,90,72,"HK1003 -Blackpoint D2 - Rev.0E DD30092021"
1-4952,SI20TPI6A8-30,"COMMISSIONING OF TP-I6",5121,"HK1003-Rev.0E-3",TT_Task,"55902",-,-,-,0,TK_NotStart,06/05/2023,,12/05/2023,,"SI20TPI6A7-25 FS,SI20TPI6A8-26 FS","SI20TPI6A7-25,SI20TPI6A8-26","SI--CYA8-70 FS,SI20CYA8-30 FS,SI--CYA8-25 FS","SI--CYA8-70,SI20CYA8-30,SI--CYA8-25",144,,144,,33,,33,,96,112,"HK1003 -Blackpoint D2 - Rev.0E DD30092021"
1-4953,SI20TPI6A3-15,"MATERIAL FOR TP INTEGRATION ON SITE TP-I6",5121,"HK1003-Rev.0E-3",TT_Mile,"55902",-,-,-,0,TK_NotStart,04/05/2022,,04/05/2022,,"SI20TPI6A2-5 FS","SI20TPI6A2-5","SI20TPI6A7-25 FS,SI20TPI6A7-20 FS","SI20TPI6A7-25,SI20TPI6A7-20",91,,91,,21,,21,,62,2712,"HK1003 -Blackpoint D2 - Rev.0E DD30092021"
1-4954,SI20TPI6A7-25,"TERMINATION OF TP-I6",5121,"HK1003-Rev.0E-3",TT_Task,"55902",-,-,-,0,TK_NotStart,24/02/2023,,09/03/2023,,"SI20TPI6A3-15 FS,SI20TPI6A7-20 FS,SI20TPI6A2-16 FS,SI--CYA7A15 SS,SI20CY-7-15 FS","SI20TPI6A3-15,SI20TPI6A7-20,SI20TPI6A2-16,SI--CYA7A15,SI20CY-7-15","SI20TPI6A8-30 FS,SI20TPI6A8-26 FS","SI20TPI6A8-30,SI20TPI6A8-26",133,,135,,31,,31,,91,568,"HK1003 -Blackpoint D2 - Rev.0E DD30092021"
1-4955,SI20TPI6A2-5,"TECHNICAL CLARIFICATION WITH CUSTOMER / DESIGN FOR CONNECTION OF TP-I6",5121,"HK1003-Rev.0E-3",TT_Task,"55902",-,-,-,100,TK_Complete,24/05/2021,24/05/2021,20/06/2021,20/06/2021,"SI-----1-05 FS","SI-----1-05","SI20TPI6A2-10 FS,SI20TPI6A3-15 FS","SI20TPI6A2-10,SI20TPI6A3-15",42,42,46,46,9,9,10,10,13,,"HK1003 -Blackpoint D2 - Rev.0E DD30092021"
1-4956,SI20TPI6A2-10,"FINAL AGREEMENT WITH CUSTOMER / ACCESS TIME / REQUIREMENTS TO TP ALIGNED TP-I6",5121,"HK1003-Rev.0E-3",TT_Mile,"55902",-,-,-,100,TK_Complete,21/06/2021,21/06/2021,21/06/2021,21/06/2021,"SI20TPI6A2-5 FS","SI20TPI6A2-5","SI20TPI6A7-20 FS,SI20TPI6A2-11 FS,SP20CJP2-70 FS","SI20TPI6A7-20,SI20TPI6A2-11,SP20CJP2-70",46,46,46,46,10,10,10,10,18,,"HK1003 -Blackpoint D2 - Rev.0E DD30092021"
1-4957,SI20TPI6A7-20,"INSTALLATION OF CONNECTION MATERIAL IN CUSTOMER SITE TP-I6",5121,"HK1003-Rev.0E-3",TT_Task,"55902",-,-,-,0,TK_NotStart,04/05/2022,,31/05/2022,,"SI20TPI6A2-10 FS,SI20TPI6A3-15 FS,SI20TPI6A2-11 FS,SI20UCA7-16 FS,SI20TP-235& FS","SI20TPI6A2-10,SI20TPI6A3-15,SI20TPI6A2-11,SI20UCA7-16,SI20TP-235&","SI20TPI6A7-25 FS,SI20TPI6A2-16 FS","SI20TPI6A7-25,SI20TPI6A2-16",91,,95,,21,,22,,62,2712,"HK1003 -Blackpoint D2 - Rev.0E DD30092021"
1-4958,SI20TPI6A2-11,"UPDATE OF TRANSITION PLAN TP-I6",5121,"HK1003-Rev.0E-3",TT_Task,"55902",-,-,-,0,TK_NotStart,09/02/2022,,15/02/2022,,"SI20TPI6A2-10 FS","SI20TPI6A2-10","SI20TPI6A7-20 FS","SI20TPI6A7-20",79,,80,,18,,18,,49,2712,"HK1003 -Blackpoint D2 - Rev.0E DD30092021"
1-4959,SI20TPI6A2-16,"ALL RELEVANT PERMITS & LOTO AVAILABLE FROM CUSTOMER TP-I6",5121,"HK1003-Rev.0E-3",TT_Mile,"55902",-,-,-,0,TK_NotStart,24/02/2023,,24/02/2023,,"SI20TPI6A7-20 FS","SI20TPI6A7-20","SI20TPI6A7-25 FS","SI20TPI6A7-25",133,,133,,31,,31,,91,568,"HK1003 -Blackpoint D2 - Rev.0E DD30092021"
1-4960,SI20TPI6A8-26,"MEDIA  AVAILABLE TP-I6",5121,"HK1003-Rev.0E-3",TT_Mile,"55902",-,-,-,0,TK_NotStart,06/05/2023,,06/05/2023,,"SI20TPI6A7-25 FS","SI20TPI6A7-25","SI20TPI6A8-30 FS","SI20TPI6A8-30",144,,144,,33,,33,,96,112,"HK1003 -Blackpoint D2 - Rev.0E DD30092021"
1-4961,SI20TPI10A8-30,"COMMISSIONING OF TP-I10",5121,"HK1003-Rev.0E-3",TT_Task,"55902",-,-,-,0,TK_NotStart,07/02/2023,,13/02/2023,,"SI20TPI10A7-25 FS,SI20TPI10A8-26 FS","SI20TPI10A7-25,SI20TPI10A8-26","SI20UBA7C-25 FS,SI20BBA8-36 FS,SI20BBA8-25 FS,SI20BBA7-51 FS,SI20BBA7-55 FS","SI20UBA7C-25,SI20BBA8-36,SI20BBA8-25,SI20BBA7-51,SI20BBA7-55",131,,132,,30,,30,,90,120,"HK1003 -Blackpoint D2 - Rev.0E DD30092021"
1-4962,SI20TPI10A3-15,"MATERIAL FOR TP INTEGRATION ON SITE TP-I10",5121,"HK1003-Rev.0E-3",TT_Mile,"55902",-,-,-,0,TK_NotStart,04/05/2022,,04/05/2022,,"SI20TPI10A2-5 FS","SI20TPI10A2-5","SI20TPI10A7-25 FS,SI20TPI10A7-20 FS","SI20TPI10A7-25,SI20TPI10A7-20",91,,91,,21,,21,,62,2016,"HK1003 -Blackpoint D2 - Rev.0E DD30092021"
1-4963,SI20TPI10A7-25,"TERMINATION OF TP-I10",5121,"HK1003-Rev.0E-3",TT_Task,"55902",-,-,-,0,TK_NotStart,22/01/2023,,04/02/2023,,"SI20TPI10A3-15 FS,SI20TPI10A7-20 FS,SI20TPI10A2-16 FS,SI20CY-7-15 FS","SI20TPI10A3-15,SI20TPI10A7-20,SI20TPI10A2-16,SI20CY-7-15","SI20TPI10A8-30 FS,SI20TPI10A8-26 FS","SI20TPI10A8-30,SI20TPI10A8-26",129,,131,,30,,30,,89,136,"HK1003 -Blackpoint D2 - Rev.0E DD30092021"
1-4964,SI20TPI10A2-5,"TECHNICAL CLARIFICATION WITH CUSTOMER / DESIGN FOR CONNECTION OF TP-I10",5121,"HK1003-Rev.0E-3",TT_Task,"55902",-,-,-,100,TK_Complete,24/05/2021,24/05/2021,20/06/2021,20/06/2021,"SI-----1-05 FS","SI-----1-05","SI20TPI10A2-10 FS,SI20TPI10A3-15 FS","SI20TPI10A2-10,SI20TPI10A3-15",42,42,46,46,9,9,10,10,13,,"HK1003 -Blackpoint D2 - Rev.0E DD30092021"
1-4965,SI20TPI10A2-10,"FINAL AGREEMENT WITH CUSTOMER / ACCESS TIME / REQUIREMENTS TO TP ALIGNED TP-I10",5121,"HK1003-Rev.0E-3",TT_Mile,"55902",-,-,-,100,TK_Complete,21/06/2021,21/06/2021,21/06/2021,21/06/2021,"SI20TPI10A2-5 FS","SI20TPI10A2-5","SI20TPI10A7-20 FS,SI20TPI10A2-11 FS,SP20CJP2-70 FS","SI20TPI10A7-20,SI20TPI10A2-11,SP20CJP2-70",46,46,46,46,10,10,10,10,18,,"HK1003 -Blackpoint D2 - Rev.0E DD30092021"
1-4966,SI20TPI10A7-20,"INSTALLATION OF CONNECTION MATERIAL IN CUSTOMER SITE TP-I10",5121,"HK1003-Rev.0E-3",TT_Task,"55902",-,-,-,0,TK_NotStart,04/05/2022,,31/05/2022,,"SI20TPI10A2-10 FS,SI20TPI10A3-15 FS,SI20TPI10A2-11 FS,SI20UCA7-16 FS,SI20TP-236& FS","SI20TPI10A2-10,SI20TPI10A3-15,SI20TPI10A2-11,SI20UCA7-16,SI20TP-236&","SI20TPI10A7-25 FS,SI20TPI10A2-16 FS","SI20TPI10A7-25,SI20TPI10A2-16",91,,95,,21,,22,,62,2016,"HK1003 -Blackpoint D2 - Rev.0E DD30092021"
1-4967,SI20TPI10A2-11,"UPDATE OF TRANSITION PLAN TP-I10",5121,"HK1003-Rev.0E-3",TT_Task,"55902",-,-,-,0,TK_NotStart,09/02/2022,,15/02/2022,,"SI20TPI10A2-10 FS","SI20TPI10A2-10","SI20TPI10A7-20 FS","SI20TPI10A7-20",79,,80,,18,,18,,49,2016,"HK1003 -Blackpoint D2 - Rev.0E DD30092021"
1-4968,SI20TPI10A2-16,"ALL RELEVANT PERMITS & LOTO AVAILABLE FROM CUSTOMER TP-I10",5121,"HK1003-Rev.0E-3",TT_Mile,"55902",-,-,-,0,TK_NotStart,22/01/2023,,22/01/2023,,"SI20TPI10A7-20 FS","SI20TPI10A7-20","SI20TPI10A7-25 FS","SI20TPI10A7-25",129,,129,,30,,30,,89,136,"HK1003 -Blackpoint D2 - Rev.0E DD30092021"
1-4969,SI20TPI10A8-26,"MEDIA  AVAILABLE TP-I10",5121,"HK1003-Rev.0E-3",TT_Mile,"55902",-,-,-,0,TK_NotStart,07/02/2023,,07/02/2023,,"SI20TPI10A7-25 FS","SI20TPI10A7-25","SI20TPI10A8-30 FS","SI20TPI10A8-30",131,,131,,30,,30,,90,120,"HK1003 -Blackpoint D2 - Rev.0E DD30092021"
1-4970,SI20TPI17A8-30,"COMMISSIONING OF TP-I17",5121,"HK1003-Rev.0E-3",TT_Task,"55902",-,-,-,0,TK_NotStart,09/06/2023,,15/06/2023,,"SI20TPI17A7-25 FS,SI20TPI17A8-26 FS","SI20TPI17A7-25,SI20TPI17A8-26","SI20CFE8-36 FS,SI20CFE8-35 FS","SI20CFE8-36,SI20CFE8-35",148,,149,,34,,34,,98,64,"HK1003 -Blackpoint D2 - Rev.0E DD30092021"
1-4971,SI20TPI17A3-15,"MATERIAL FOR TP INTEGRATION ON SITE TP-I17",5121,"HK1003-Rev.0E-3",TT_Mile,"55902",-,-,-,0,TK_NotStart,28/07/2022,,28/07/2022,,"SI20TPI17A2-5 FS","SI20TPI17A2-5","SI20TPI17A7-25 FS,SI20TPI17A7-20 FS","SI20TPI17A7-25,SI20TPI17A7-20",103,,103,,24,,24,,76,2256,"HK1003 -Blackpoint D2 - Rev.0E DD30092021"
1-4972,SI20TPI17A7-25,"TERMINATION OF TP-I17",5121,"HK1003-Rev.0E-3",TT_Task,"55902",-,-,-,0,TK_NotStart,25/08/2022,,07/09/2022,,"SI20TPI17A3-15 FS,SI20TPI17A7-20 FS,SI20TPI17A2-16 FS","SI20TPI17A3-15,SI20TPI17A7-20,SI20TPI17A2-16","SI20TPI17A8-30 FS,SI20TPI17A8-26 FS","SI20TPI17A8-30,SI20TPI17A8-26",107,,109,,25,,25,,79,2256,"HK1003 -Blackpoint D2 - Rev.0E DD30092021"
1-4973,SI20TPI17A2-5,"TECHNICAL CLARIFICATION WITH CUSTOMER / DESIGN FOR CONNECTION OF TP-I17",5121,"HK1003-Rev.0E-3",TT_Task,"55902",-,-,-,100,TK_Complete,24/05/2021,24/05/2021,20/06/2021,20/06/2021,"SI-----1-05 FS","SI-----1-05","SI20TPI17A2-10 FS,SI20TPI17A3-15 FS","SI20TPI17A2-10,SI20TPI17A3-15",42,42,46,46,9,9,10,10,13,,"HK1003 -Blackpoint D2 - Rev.0E DD30092021"
1-4974,SI20TPI17A2-10,"FINAL AGREEMENT WITH CUSTOMER / ACCESS TIME / REQUIREMENTS TO TP ALIGNED TP-I17",5121,"HK1003-Rev.0E-3",TT_Mile,"55902",-,-,-,100,TK_Complete,21/06/2021,21/06/2021,21/06/2021,21/06/2021,"SI20TPI17A2-5 FS","SI20TPI17A2-5","SI20TPI17A7-20 FS,SI20TPI17A2-11 FS,SP20CJP2-70 FS","SI20TPI17A7-20,SI20TPI17A2-11,SP20CJP2-70",46,46,46,46,10,10,10,10,18,,"HK1003 -Blackpoint D2 - Rev.0E DD30092021"
1-4975,SI20TPI17A7-20,"INSTALLATION OF CONNECTION MATERIAL IN CUSTOMER SITE TP-I17",5121,"HK1003-Rev.0E-3",TT_Task,"55902",-,-,-,0,TK_NotStart,28/07/2022,,24/08/2022,,"SI20TPI17A2-10 FS,SI20TPI17A3-15 FS,SI20TPI17A2-11 FS,SI20UCA7-16 FS,SI20CFE7-16 FS,SI20TP-237& FS","SI20TPI17A2-10,SI20TPI17A3-15,SI20TPI17A2-11,SI20UCA7-16,SI20CFE7-16,SI20TP-237&","SI20TPI17A7-25 FS,SI20TPI17A2-16 FS","SI20TPI17A7-25,SI20TPI17A2-16",103,,107,,24,,25,,76,2256,"HK1003 -Blackpoint D2 - Rev.0E DD30092021"
1-4976,SI20TPI17A2-11,"UPDATE OF TRANSITION PLAN TP-I17",5121,"HK1003-Rev.0E-3",TT_Task,"55902",-,-,-,0,TK_NotStart,05/05/2022,,11/05/2022,,"SI20TPI17A2-10 FS","SI20TPI17A2-10","SI20TPI17A7-20 FS","SI20TPI17A7-20",91,,92,,21,,21,,63,2256,"HK1003 -Blackpoint D2 - Rev.0E DD30092021"
1-4977,SI20TPI17A2-16,"ALL RELEVANT PERMITS & LOTO AVAILABLE FROM CUSTOMER TP-I17",5121,"HK1003-Rev.0E-3",TT_Mile,"55902",-,-,-,0,TK_NotStart,25/08/2022,,25/08/2022,,"SI20TPI17A7-20 FS","SI20TPI17A7-20","SI20TPI17A7-25 FS","SI20TPI17A7-25",107,,107,,25,,25,,79,2256,"HK1003 -Blackpoint D2 - Rev.0E DD30092021"
1-4978,SI20TPI17A8-26,"MEDIA  AVAILABLE TP-I17",5121,"HK1003-Rev.0E-3",TT_Mile,"55902",-,-,-,0,TK_NotStart,09/06/2023,,09/06/2023,,"SI20TPI17A7-25 FS","SI20TPI17A7-25","SI20TPI17A8-30 FS","SI20TPI17A8-30",148,,148,,34,,34,,98,64,"HK1003 -Blackpoint D2 - Rev.0E DD30092021"
1-4979,SI20TPI19I8-30,"COMMISSIONING OF TP-I19i",5121,"HK1003-Rev.0E-3",TT_Task,"55902",-,-,-,0,TK_NotStart,09/06/2023,,15/06/2023,,"SI20TPI19I7-25 FS,SI20TPI19I8-26 FS","SI20TPI19I7-25,SI20TPI19I8-26","SI20CFE8-35 FS,SI20CFE8-36 FS","SI20CFE8-35,SI20CFE8-36",148,,149,,34,,34,,98,64,"HK1003 -Blackpoint D2 - Rev.0E DD30092021"
1-4980,SI20TPI19I3-15,"MATERIAL FOR TP INTEGRATION ON SITE TP-I19i",5121,"HK1003-Rev.0E-3",TT_Mile,"55902",-,-,-,0,TK_NotStart,04/05/2022,,04/05/2022,,"SI20TPI19I2-5 FS","SI20TPI19I2-5","SI20TPI19I7-25 FS,SI20TPI19I7-20 FS","SI20TPI19I7-25,SI20TPI19I7-20",91,,91,,21,,21,,62,2936,"HK1003 -Blackpoint D2 - Rev.0E DD30092021"
1-4981,SI20TPI19I7-25,"TERMINATION OF TP-I19i",5121,"HK1003-Rev.0E-3",TT_Task,"55902",-,-,-,0,TK_NotStart,01/06/2022,,14/06/2022,,"SI20TPI19I3-15 FS,SI20TPI19I7-20 FS,SI20TPI19I2-16 FS","SI20TPI19I3-15,SI20TPI19I7-20,SI20TPI19I2-16","SI20TPI19I8-30 FS,SI20TPI19I8-26 FS","SI20TPI19I8-30,SI20TPI19I8-26",95,,97,,22,,22,,67,2936,"HK1003 -Blackpoint D2 - Rev.0E DD30092021"
1-4982,SI20TPI19I2-5,"TECHNICAL CLARIFICATION WITH CUSTOMER / DESIGN FOR CONNECTION OF TP-I19i",5121,"HK1003-Rev.0E-3",TT_Task,"55902",-,-,-,100,TK_Complete,24/05/2021,24/05/2021,20/06/2021,20/06/2021,"SI-----1-05 FS","SI-----1-05","SI20TPI19I2-10 FS,SI20TPI19I3-15 FS","SI20TPI19I2-10,SI20TPI19I3-15",42,42,46,46,9,9,10,10,14,,"HK1003 -Blackpoint D2 - Rev.0E DD30092021"
1-4983,SI20TPI19I2-10,"FINAL AGREEMENT WITH CUSTOMER / ACCESS TIME / REQUIREMENTS TO TP ALIGNED TP-I19i",5121,"HK1003-Rev.0E-3",TT_Mile,"55902",-,-,-,100,TK_Complete,21/06/2021,21/06/2021,21/06/2021,21/06/2021,"SI20TPI19I2-5 FS","SI20TPI19I2-5","SI20TPI19I7-20 FS,SI20TPI19I2-11 FS,SP20CJP2-70 FS","SI20TPI19I7-20,SI20TPI19I2-11,SP20CJP2-70",46,46,46,46,10,10,10,10,18,,"HK1003 -Blackpoint D2 - Rev.0E DD30092021"
1-4984,SI20TPI19I7-20,"INSTALLATION OF CONNECTION MATERIAL IN CUSTOMER SITE TP-I19i",5121,"HK1003-Rev.0E-3",TT_Task,"55902",-,-,-,0,TK_NotStart,04/05/2022,,31/05/2022,,"SI20TPI19I2-10 FS,SI20TPI19I3-15 FS,SI20TPI19I2-11 FS,SI20UCA7-16 FS,SI20TP-238& FS","SI20TPI19I2-10,SI20TPI19I3-15,SI20TPI19I2-11,SI20UCA7-16,SI20TP-238&","SI20TPI19I7-25 FS,SI20TPI19I2-16 FS","SI20TPI19I7-25,SI20TPI19I2-16",91,,95,,21,,22,,62,2936,"HK1003 -Blackpoint D2 - Rev.0E DD30092021"
1-4985,SI20TPI19I2-11,"UPDATE OF TRANSITION PLAN TP-I19i",5121,"HK1003-Rev.0E-3",TT_Task,"55902",-,-,-,0,TK_NotStart,09/02/2022,,15/02/2022,,"SI20TPI19I2-10 FS","SI20TPI19I2-10","SI20TPI19I7-20 FS","SI20TPI19I7-20",79,,80,,18,,18,,49,2936,"HK1003 -Blackpoint D2 - Rev.0E DD30092021"
1-4986,SI20TPI19I2-16,"ALL RELEVANT PERMITS & LOTO AVAILABLE FROM CUSTOMER TP-I19i",5121,"HK1003-Rev.0E-3",TT_Mile,"55902",-,-,-,0,TK_NotStart,01/06/2022,,01/06/2022,,"SI20TPI19I7-20 FS","SI20TPI19I7-20","SI20TPI19I7-25 FS","SI20TPI19I7-25",95,,95,,22,,22,,67,2936,"HK1003 -Blackpoint D2 - Rev.0E DD30092021"
1-4987,SI20TPI19I8-26,"MEDIA  AVAILABLE TP-I19i",5121,"HK1003-Rev.0E-3",TT_Mile,"55902",-,-,-,0,TK_NotStart,09/06/2023,,09/06/2023,,"SI20TPI19I7-25 FS","SI20TPI19I7-25","SI20TPI19I8-30 FS","SI20TPI19I8-30",148,,148,,34,,34,,98,64,"HK1003 -Blackpoint D2 - Rev.0E DD30092021"
1-4988,SI20TPI19II8-30,"COMMISSIONING OF TP-I19ii",5121,"HK1003-Rev.0E-3",TT_Task,"55902",-,-,-,0,TK_NotStart,09/06/2023,,15/06/2023,,"SI20TPI19II7-25 FS,SI20TPI19II8-26 FS","SI20TPI19II7-25,SI20TPI19II8-26","SI20CFE8-35 FS,SI20CFE8-36 FS","SI20CFE8-35,SI20CFE8-36",148,,149,,34,,34,,98,64,"HK1003 -Blackpoint D2 - Rev.0E DD30092021"
1-4989,SI20TPI19II3-15,"MATERIAL FOR TP INTEGRATION ON SITE TP-I19ii",5121,"HK1003-Rev.0E-3",TT_Mile,"55902",-,-,-,0,TK_NotStart,04/05/2022,,04/05/2022,,"SI20TPI19II2-5 FS","SI20TPI19II2-5","SI20TPI19II7-25 FS,SI20TPI19II7-20 FS","SI20TPI19II7-25,SI20TPI19II7-20",91,,91,,21,,21,,62,2936,"HK1003 -Blackpoint D2 - Rev.0E DD30092021"
1-4990,SI20TPI19II7-25,"TERMINATION OF TP-I19ii",5121,"HK1003-Rev.0E-3",TT_Task,"55902",-,-,-,0,TK_NotStart,01/06/2022,,14/06/2022,,"SI20TPI19II3-15 FS,SI20TPI19II7-20 FS,SI20TPI19II2-16 FS","SI20TPI19II3-15,SI20TPI19II7-20,SI20TPI19II2-16","SI20TPI19II8-30 FS,SI20TPI19II8-26 FS","SI20TPI19II8-30,SI20TPI19II8-26",95,,97,,22,,22,,67,2936,"HK1003 -Blackpoint D2 - Rev.0E DD30092021"
1-4991,SI20TPI19II2-5,"TECHNICAL CLARIFICATION WITH CUSTOMER / DESIGN FOR CONNECTION OF TP-I19ii",5121,"HK1003-Rev.0E-3",TT_Task,"55902",-,-,-,100,TK_Complete,24/05/2021,24/05/2021,20/06/2021,20/06/2021,"SI-----1-05 FS","SI-----1-05","SI20TPI19II2-10 FS,SI20TPI19II3-15 FS","SI20TPI19II2-10,SI20TPI19II3-15",42,42,46,46,9,9,10,10,14,,"HK1003 -Blackpoint D2 - Rev.0E DD30092021"
1-4992,SI20TPI19II2-10,"FINAL AGREEMENT WITH CUSTOMER / ACCESS TIME / REQUIREMENTS TO TP ALIGNED TP-I19ii",5121,"HK1003-Rev.0E-3",TT_Mile,"55902",-,-,-,100,TK_Complete,21/06/2021,21/06/2021,21/06/2021,21/06/2021,"SI20TPI19II2-5 FS","SI20TPI19II2-5","SI20TPI19II7-20 FS,SI20TPI19II2-11 FS,SP20CJP2-70 FS","SI20TPI19II7-20,SI20TPI19II2-11,SP20CJP2-70",46,46,46,46,10,10,10,10,18,,"HK1003 -Blackpoint D2 - Rev.0E DD30092021"
1-4993,SI20TPI19II7-20,"INSTALLATION OF CONNECTION MATERIAL IN CUSTOMER SITE TP-I19ii",5121,"HK1003-Rev.0E-3",TT_Task,"55902",-,-,-,0,TK_NotStart,04/05/2022,,31/05/2022,,"SI20TPI19II2-10 FS,SI20TPI19II3-15 FS,SI20TPI19II2-11 FS,SI20UCA7-16 FS,SI20TP-239& FS","SI20TPI19II2-10,SI20TPI19II3-15,SI20TPI19II2-11,SI20UCA7-16,SI20TP-239&","SI20TPI19II7-25 FS,SI20TPI19II2-16 FS","SI20TPI19II7-25,SI20TPI19II2-16",91,,95,,21,,22,,62,2936,"HK1003 -Blackpoint D2 - Rev.0E DD30092021"
1-4994,SI20TPI19II2-11,"UPDATE OF TRANSITION PLAN TP-I19ii",5121,"HK1003-Rev.0E-3",TT_Task,"55902",-,-,-,0,TK_NotStart,09/02/2022,,15/02/2022,,"SI20TPI19II2-10 FS","SI20TPI19II2-10","SI20TPI19II7-20 FS","SI20TPI19II7-20",79,,80,,18,,18,,49,2936,"HK1003 -Blackpoint D2 - Rev.0E DD30092021"
1-4995,SI20TPI19II2-16,"ALL RELEVANT PERMITS & LOTO AVAILABLE FROM CUSTOMER TP-I19ii",5121,"HK1003-Rev.0E-3",TT_Mile,"55902",-,-,-,0,TK_NotStart,01/06/2022,,01/06/2022,,"SI20TPI19II7-20 FS","SI20TPI19II7-20","SI20TPI19II7-25 FS","SI20TPI19II7-25",95,,95,,22,,22,,67,2936,"HK1003 -Blackpoint D2 - Rev.0E DD30092021"
1-4996,SI20TPI19II8-26,"MEDIA  AVAILABLE TP-I19ii",5121,"HK1003-Rev.0E-3",TT_Mile,"55902",-,-,-,0,TK_NotStart,09/06/2023,,09/06/2023,,"SI20TPI19II7-25 FS","SI20TPI19II7-25","SI20TPI19II8-30 FS","SI20TPI19II8-30",148,,148,,34,,34,,98,64,"HK1003 -Blackpoint D2 - Rev.0E DD30092021"
1-4997,SI20TPI21A8-30,"COMMISSIONING OF TP-I21",5121,"HK1003-Rev.0E-3",TT_Task,"55902",-,-,-,0,TK_NotStart,06/05/2023,,12/05/2023,,"SI20TPI21A7-25 FS,SI20TPI21A8-26 FS","SI20TPI21A7-25,SI20TPI21A8-26","SI20CYA8-30 FS,SI--CYA8-70 FS,SI--CYA8-25 FS","SI20CYA8-30,SI--CYA8-70,SI--CYA8-25",144,,144,,33,,33,,97,112,"HK1003 -Blackpoint D2 - Rev.0E DD30092021"
1-4998,SI20TPI21A3-15,"MATERIAL FOR TP INTEGRATION ON SITE TP-I21",5121,"HK1003-Rev.0E-3",TT_Mile,"55902",-,-,-,0,TK_NotStart,04/05/2022,,04/05/2022,,"SI20TPI21A2-5 FS","SI20TPI21A2-5","SI20TPI21A7-25 FS,SI20TPI21A7-20 FS","SI20TPI21A7-25,SI20TPI21A7-20",91,,91,,21,,21,,62,2712,"HK1003 -Blackpoint D2 - Rev.0E DD30092021"
1-4999,SI20TPI21A7-25,"TERMINATION OF TP-I21",5121,"HK1003-Rev.0E-3",TT_Task,"55902",-,-,-,0,TK_NotStart,24/02/2023,,09/03/2023,,"SI20TPI21A3-15 FS,SI20TPI21A7-20 FS,SI20TPI21A2-16 FS,SI--CYA7A15 SS,SI20CY-7-15 FS","SI20TPI21A3-15,SI20TPI21A7-20,SI20TPI21A2-16,SI--CYA7A15,SI20CY-7-15","SI20TPI21A8-30 FS,SI20TPI21A8-26 FS","SI20TPI21A8-30,SI20TPI21A8-26",133,,135,,31,,31,,91,568,"HK1003 -Blackpoint D2 - Rev.0E DD30092021"
1-5000,SI20TPI21A2-5,"TECHNICAL CLARIFICATION WITH CUSTOMER / DESIGN FOR CONNECTION OF TP-I21",5121,"HK1003-Rev.0E-3",TT_Task,"55902",-,-,-,100,TK_Complete,24/05/2021,24/05/2021,20/06/2021,20/06/2021,"SI-----1-05 FS","SI-----1-05","SI20TPI21A2-10 FS,SI20TPI21A3-15 FS","SI20TPI21A2-10,SI20TPI21A3-15",42,42,46,46,9,9,10,10,14,,"HK1003 -Blackpoint D2 - Rev.0E DD30092021"
1-5001,SI20TPI21A2-10,"FINAL AGREEMENT WITH CUSTOMER / ACCESS TIME / REQUIREMENTS TO TP ALIGNED TP-I21",5121,"HK1003-Rev.0E-3",TT_Mile,"55902",-,-,-,100,TK_Complete,21/06/2021,21/06/2021,21/06/2021,21/06/2021,"SI20TPI21A2-5 FS","SI20TPI21A2-5","SI20TPI21A7-20 FS,SI20TPI21A2-11 FS,SP20CJP2-70 FS","SI20TPI21A7-20,SI20TPI21A2-11,SP20CJP2-70",46,46,46,46,10,10,10,10,18,,"HK1003 -Blackpoint D2 - Rev.0E DD30092021"
1-5002,SI20TPI21A7-20,"INSTALLATION OF CONNECTION MATERIAL IN CUSTOMER SITE TP-I21",5121,"HK1003-Rev.0E-3",TT_Task,"55902",-,-,-,0,TK_NotStart,04/05/2022,,31/05/2022,,"SI20TPI21A2-10 FS,SI20TPI21A3-15 FS,SI20TPI21A2-11 FS,SI20UCA7-16 FS,SI20TP-240& FS","SI20TPI21A2-10,SI20TPI21A3-15,SI20TPI21A2-11,SI20UCA7-16,SI20TP-240&","SI20TPI21A7-25 FS,SI20TPI21A2-16 FS","SI20TPI21A7-25,SI20TPI21A2-16",91,,95,,21,,22,,62,2712,"HK1003 -Blackpoint D2 - Rev.0E DD30092021"
1-5003,SI20TPI21A2-11,"UPDATE OF TRANSITION PLAN TP-I21",5121,"HK1003-Rev.0E-3",TT_Task,"55902",-,-,-,0,TK_NotStart,09/02/2022,,15/02/2022,,"SI20TPI21A2-10 FS","SI20TPI21A2-10","SI20TPI21A7-20 FS","SI20TPI21A7-20",79,,80,,18,,18,,49,2712,"HK1003 -Blackpoint D2 - Rev.0E DD30092021"
1-5004,SI20TPI21A2-16,"ALL RELEVANT PERMITS & LOTO AVAILABLE FROM CUSTOMER TP-I21",5121,"HK1003-Rev.0E-3",TT_Mile,"55902",-,-,-,0,TK_NotStart,24/02/2023,,24/02/2023,,"SI20TPI21A7-20 FS","SI20TPI21A7-20","SI20TPI21A7-25 FS","SI20TPI21A7-25",133,,133,,31,,31,,91,568,"HK1003 -Blackpoint D2 - Rev.0E DD30092021"
1-5005,SI20TPI21A8-26,"MEDIA  AVAILABLE TP-I21",5121,"HK1003-Rev.0E-3",TT_Mile,"55902",-,-,-,0,TK_NotStart,06/05/2023,,06/05/2023,,"SI20TPI21A7-25 FS","SI20TPI21A7-25","SI20TPI21A8-30 FS","SI20TPI21A8-30",144,,144,,33,,33,,97,112,"HK1003 -Blackpoint D2 - Rev.0E DD30092021"
1-5006,SI20TPI22A8-30,"COMMISSIONING OF TP-I22",5121,"HK1003-Rev.0E-3",TT_Task,"55902",-,-,-,0,TK_NotStart,09/06/2023,,15/06/2023,,"SI20TPI22A7-25 FS,SI20TPI22A8-26 FS","SI20TPI22A7-25,SI20TPI22A8-26","SI20SGY8A26 FS","SI20SGY8A26",148,,149,,34,,34,,98,8,"HK1003 -Blackpoint D2 - Rev.0E DD30092021"
1-5007,SI20TPI22A3-15,"MATERIAL FOR TP INTEGRATION ON SITE TP-I22",5121,"HK1003-Rev.0E-3",TT_Mile,"55902",-,-,-,0,TK_NotStart,04/05/2022,,04/05/2022,,"SI20TPI22A2-5 FS","SI20TPI22A2-5","SI20TPI22A7-25 FS,SI20TPI22A7-20 FS","SI20TPI22A7-25,SI20TPI22A7-20",91,,91,,21,,21,,62,2880,"HK1003 -Blackpoint D2 - Rev.0E DD30092021"
1-5008,SI20TPI22A7-25,"TERMINATION OF TP-I22",5121,"HK1003-Rev.0E-3",TT_Task,"55902",-,-,-,0,TK_NotStart,01/06/2022,,14/06/2022,,"SI20TPI22A3-15 FS,SI20TPI22A7-20 FS,SI20TPI22A2-16 FS","SI20TPI22A3-15,SI20TPI22A7-20,SI20TPI22A2-16","SI20TPI22A8-30 FS,SI20TPI22A8-26 FS","SI20TPI22A8-30,SI20TPI22A8-26",95,,97,,22,,22,,67,2880,"HK1003 -Blackpoint D2 - Rev.0E DD30092021"
1-5009,SI20TPI22A2-5,"TECHNICAL CLARIFICATION WITH CUSTOMER / DESIGN FOR CONNECTION OF TP-I22",5121,"HK1003-Rev.0E-3",TT_Task,"55902",-,-,-,100,TK_Complete,24/05/2021,24/05/2021,20/06/2021,20/06/2021,"SI-----1-05 FS","SI-----1-05","SI20TPI22A2-10 FS,SI20TPI22A3-15 FS","SI20TPI22A2-10,SI20TPI22A3-15",42,42,46,46,9,9,10,10,14,,"HK1003 -Blackpoint D2 - Rev.0E DD30092021"
1-5010,SI20TPI22A2-10,"FINAL AGREEMENT WITH CUSTOMER / ACCESS TIME / REQUIREMENTS TO TP ALIGNED TP-I22",5121,"HK1003-Rev.0E-3",TT_Mile,"55902",-,-,-,100,TK_Complete,21/06/2021,21/06/2021,21/06/2021,21/06/2021,"SI20TPI22A2-5 FS","SI20TPI22A2-5","SI20TPI22A7-20 FS,SI20TPI22A2-11 FS,SP20CJP2-70 FS","SI20TPI22A7-20,SI20TPI22A2-11,SP20CJP2-70",46,46,46,46,10,10,10,10,18,,"HK1003 -Blackpoint D2 - Rev.0E DD30092021"
1-5011,SI20TPI22A7-20,"INSTALLATION OF CONNECTION MATERIAL IN CUSTOMER SITE TP-I22",5121,"HK1003-Rev.0E-3",TT_Task,"55902",-,-,-,0,TK_NotStart,04/05/2022,,31/05/2022,,"SI20TPI22A2-10 FS,SI20TPI22A3-15 FS,SI20TPI22A2-11 FS,SI20UCA7-16 FS,SI20TP-241& FS","SI20TPI22A2-10,SI20TPI22A3-15,SI20TPI22A2-11,SI20UCA7-16,SI20TP-241&","SI20TPI22A7-25 FS,SI20TPI22A2-16 FS","SI20TPI22A7-25,SI20TPI22A2-16",91,,95,,21,,22,,62,2880,"HK1003 -Blackpoint D2 - Rev.0E DD30092021"
1-5012,SI20TPI22A2-11,"UPDATE OF TRANSITION PLAN TP-I22",5121,"HK1003-Rev.0E-3",TT_Task,"55902",-,-,-,0,TK_NotStart,09/02/2022,,15/02/2022,,"SI20TPI22A2-10 FS","SI20TPI22A2-10","SI20TPI22A7-20 FS","SI20TPI22A7-20",79,,80,,18,,18,,49,2880,"HK1003 -Blackpoint D2 - Rev.0E DD30092021"
1-5013,SI20TPI22A2-16,"ALL RELEVANT PERMITS & LOTO AVAILABLE FROM CUSTOMER TP-I22",5121,"HK1003-Rev.0E-3",TT_Mile,"55902",-,-,-,0,TK_NotStart,01/06/2022,,01/06/2022,,"SI20TPI22A7-20 FS","SI20TPI22A7-20","SI20TPI22A7-25 FS","SI20TPI22A7-25",95,,95,,22,,22,,67,2880,"HK1003 -Blackpoint D2 - Rev.0E DD30092021"
1-5014,SI20TPI22A8-26,"MEDIA  AVAILABLE TP-I22",5121,"HK1003-Rev.0E-3",TT_Mile,"55902",-,-,-,0,TK_NotStart,09/06/2023,,09/06/2023,,"SI20TPI22A7-25 FS","SI20TPI22A7-25","SI20TPI22A8-30 FS","SI20TPI22A8-30",148,,148,,34,,34,,98,8,"HK1003 -Blackpoint D2 - Rev.0E DD30092021"
1-5015,SI20TPI23A8-30,"COMMISSIONING OF TP-I23",5121,"HK1003-Rev.0E-3",TT_Task,"55902",-,-,-,0,TK_NotStart,22/02/2023,,28/02/2023,,"SI20TPI23A7-25 FS,SI20TPI23A8-26 FS","SI20TPI23A7-25,SI20TPI23A8-26","SI20B--8-52 FS","SI20B--8-52",133,,134,,31,,31,,91,64,"HK1003 -Blackpoint D2 - Rev.0E DD30092021"
1-5016,SI20TPI23A3-15,"MATERIAL FOR TP INTEGRATION ON SITE TP-I23",5121,"HK1003-Rev.0E-3",TT_Mile,"55902",-,-,-,0,TK_NotStart,04/05/2022,,04/05/2022,,"SI20TPI23A2-5 FS","SI20TPI23A2-5","SI20TPI23A7-25 FS,SI20TPI23A7-20 FS","SI20TPI23A7-25,SI20TPI23A7-20",91,,91,,21,,21,,62,2080,"HK1003 -Blackpoint D2 - Rev.0E DD30092021"
1-5017,SI20TPI23A7-25,"TERMINATION OF TP-I23",5121,"HK1003-Rev.0E-3",TT_Task,"55902",-,-,-,0,TK_NotStart,01/06/2022,,14/06/2022,,"SI20TPI23A3-15 FS,SI20TPI23A7-20 FS,SI20TPI23A2-16 FS","SI20TPI23A3-15,SI20TPI23A7-20,SI20TPI23A2-16","SI20TPI23A8-30 FS,SI20TPI23A8-26 FS","SI20TPI23A8-30,SI20TPI23A8-26",95,,97,,22,,22,,67,2080,"HK1003 -Blackpoint D2 - Rev.0E DD30092021"
1-5018,SI20TPI23A2-5,"TECHNICAL CLARIFICATION WITH CUSTOMER / DESIGN FOR CONNECTION OF TP-I23",5121,"HK1003-Rev.0E-3",TT_Task,"55902",-,-,-,100,TK_Complete,24/05/2021,24/05/2021,20/06/2021,20/06/2021,"SI-----1-05 FS","SI-----1-05","SI20TPI23A2-10 FS,SI20TPI23A3-15 FS","SI20TPI23A2-10,SI20TPI23A3-15",42,42,46,46,9,9,10,10,14,,"HK1003 -Blackpoint D2 - Rev.0E DD30092021"
1-5019,SI20TPI23A2-10,"FINAL AGREEMENT WITH CUSTOMER / ACCESS TIME / REQUIREMENTS TO TP ALIGNED TP-I23",5121,"HK1003-Rev.0E-3",TT_Mile,"55902",-,-,-,100,TK_Complete,21/06/2021,21/06/2021,21/06/2021,21/06/2021,"SI20TPI23A2-5 FS","SI20TPI23A2-5","SI20TPI23A7-20 FS,SI20TPI23A2-11 FS,SP20CJP2-70 FS","SI20TPI23A7-20,SI20TPI23A2-11,SP20CJP2-70",46,46,46,46,10,10,10,10,18,,"HK1003 -Blackpoint D2 - Rev.0E DD30092021"
1-5020,SI20TPI23A7-20,"INSTALLATION OF CONNECTION MATERIAL IN CUSTOMER SITE TP-I23",5121,"HK1003-Rev.0E-3",TT_Task,"55902",-,-,-,0,TK_NotStart,04/05/2022,,31/05/2022,,"SI20TPI23A2-10 FS,SI20TPI23A3-15 FS,SI20TPI23A2-11 FS,SI20UCA7-16 FS,SI20TP-242& FS","SI20TPI23A2-10,SI20TPI23A3-15,SI20TPI23A2-11,SI20UCA7-16,SI20TP-242&","SI20TPI23A7-25 FS,SI20TPI23A2-16 FS,SI20CR-8-25 FS","SI20TPI23A7-25,SI20TPI23A2-16,SI20CR-8-25",91,,95,,21,,22,,62,2080,"HK1003 -Blackpoint D2 - Rev.0E DD30092021"
1-5021,SI20TPI23A2-11,"UPDATE OF TRANSITION PLAN TP-I23",5121,"HK1003-Rev.0E-3",TT_Task,"55902",-,-,-,0,TK_NotStart,09/02/2022,,15/02/2022,,"SI20TPI23A2-10 FS","SI20TPI23A2-10","SI20TPI23A7-20 FS","SI20TPI23A7-20",79,,80,,18,,18,,49,2080,"HK1003 -Blackpoint D2 - Rev.0E DD30092021"
1-5022,SI20TPI23A2-16,"ALL RELEVANT PERMITS & LOTO AVAILABLE FROM CUSTOMER TP-I23",5121,"HK1003-Rev.0E-3",TT_Mile,"55902",-,-,-,0,TK_NotStart,01/06/2022,,01/06/2022,,"SI20TPI23A7-20 FS","SI20TPI23A7-20","SI20TPI23A7-25 FS","SI20TPI23A7-25",95,,95,,22,,22,,67,2080,"HK1003 -Blackpoint D2 - Rev.0E DD30092021"
1-5023,SI20TPI23A8-26,"MEDIA  AVAILABLE TP-I23",5121,"HK1003-Rev.0E-3",TT_Mile,"55902",-,-,-,0,TK_NotStart,22/02/2023,,22/02/2023,,"SI20TPI23A7-25 FS","SI20TPI23A7-25","SI20TPI23A8-30 FS","SI20TPI23A8-30",133,,133,,31,,31,,91,64,"HK1003 -Blackpoint D2 - Rev.0E DD30092021"
1-5024,SI20TPI15A8-30,"COMMISSIONING OF TP-I15",5121,"HK1003-Rev.0E-3",TT_Task,"55902",-,-,-,0,TK_NotStart,04/04/2023,,10/04/2023,,"SI20TPI15A7-25 FS,SI20TPI15A8-26 FS","SI20TPI15A7-25,SI20TPI15A8-26","SI20QCB8-25 FS,SI20QC-8-25 FS","SI20QCB8-25,SI20QC-8-25",139,,140,,32,,32,,94,16,"HK1003 -Blackpoint D2 - Rev.0E DD30092021"
1-5025,SI20TPI15A3-15,"MATERIAL FOR TP INTEGRATION ON SITE TP-I15",5121,"HK1003-Rev.0E-3",TT_Mile,"55902",-,-,-,0,TK_NotStart,04/05/2022,,04/05/2022,,"SI20TPI15A2-5 FS","SI20TPI15A2-5","SI20TPI15A7-25 FS,SI20TPI15A7-20 FS","SI20TPI15A7-25,SI20TPI15A7-20",91,,91,,21,,21,,62,2360,"HK1003 -Blackpoint D2 - Rev.0E DD30092021"
1-5026,SI20TPI15A7-25,"TERMINATION OF TP-I15",5121,"HK1003-Rev.0E-3",TT_Task,"55902",-,-,-,0,TK_NotStart,01/06/2022,,14/06/2022,,"SI20TPI15A3-15 FS,SI20TPI15A7-20 FS,SI20TPI15A2-16 FS","SI20TPI15A3-15,SI20TPI15A7-20,SI20TPI15A2-16","SI20TPI15A8-30 FS,SI20TPI15A8-26 FS","SI20TPI15A8-30,SI20TPI15A8-26",95,,97,,22,,22,,67,2360,"HK1003 -Blackpoint D2 - Rev.0E DD30092021"
1-5027,SI20TPI15A2-5,"TECHNICAL CLARIFICATION WITH CUSTOMER / DESIGN FOR CONNECTION OF TP-I15",5121,"HK1003-Rev.0E-3",TT_Task,"55902",-,-,-,100,TK_Complete,24/05/2021,24/05/2021,20/06/2021,20/06/2021,"SI-----1-05 FS","SI-----1-05","SI20TPI15A2-10 FS,SI20TPI15A3-15 FS","SI20TPI15A2-10,SI20TPI15A3-15",42,42,46,46,9,9,10,10,14,,"HK1003 -Blackpoint D2 - Rev.0E DD30092021"
1-5028,SI20TPI15A2-10,"FINAL AGREEMENT WITH CUSTOMER / ACCESS TIME / REQUIREMENTS TO TP ALIGNED TP-I15",5121,"HK1003-Rev.0E-3",TT_Mile,"55902",-,-,-,100,TK_Complete,21/06/2021,21/06/2021,21/06/2021,21/06/2021,"SI20TPI15A2-5 FS","SI20TPI15A2-5","SI20TPI15A7-20 FS,SI20TPI15A2-11 FS,SP20CJP2-70 FS","SI20TPI15A7-20,SI20TPI15A2-11,SP20CJP2-70",46,46,46,46,10,10,10,10,18,,"HK1003 -Blackpoint D2 - Rev.0E DD30092021"
1-5029,SI20TPI15A7-20,"INSTALLATION OF CONNECTION MATERIAL IN CUSTOMER SITE TP-I15",5121,"HK1003-Rev.0E-3",TT_Task,"55902",-,-,-,0,TK_NotStart,04/05/2022,,31/05/2022,,"SI20TPI15A2-10 FS,SI20TPI15A3-15 FS,SI20TPI15A2-11 FS,SI20UCA7-16 FS,SI20TP-243& FS","SI20TPI15A2-10,SI20TPI15A3-15,SI20TPI15A2-11,SI20UCA7-16,SI20TP-243&","SI20TPI15A7-25 FS,SI20TPI15A2-16 FS","SI20TPI15A7-25,SI20TPI15A2-16",91,,95,,21,,22,,62,2360,"HK1003 -Blackpoint D2 - Rev.0E DD30092021"
1-5030,SI20TPI15A2-11,"UPDATE OF TRANSITION PLAN TP-I15",5121,"HK1003-Rev.0E-3",TT_Task,"55902",-,-,-,0,TK_NotStart,09/02/2022,,15/02/2022,,"SI20TPI15A2-10 FS","SI20TPI15A2-10","SI20TPI15A7-20 FS","SI20TPI15A7-20",79,,80,,18,,18,,49,2360,"HK1003 -Blackpoint D2 - Rev.0E DD30092021"
1-5031,SI20TPI15A2-16,"ALL RELEVANT PERMITS & LOTO AVAILABLE FROM CUSTOMER TP-I15",5121,"HK1003-Rev.0E-3",TT_Mile,"55902",-,-,-,0,TK_NotStart,01/06/2022,,01/06/2022,,"SI20TPI15A7-20 FS","SI20TPI15A7-20","SI20TPI15A7-25 FS","SI20TPI15A7-25",95,,95,,22,,22,,68,2360,"HK1003 -Blackpoint D2 - Rev.0E DD30092021"
1-5032,SI20TPI15A8-26,"MEDIA  AVAILABLE TP-I15",5121,"HK1003-Rev.0E-3",TT_Mile,"55902",-,-,-,0,TK_NotStart,04/04/2023,,04/04/2023,,"SI20TPI15A7-25 FS","SI20TPI15A7-25","SI20TPI15A8-30 FS","SI20TPI15A8-30",139,,139,,32,,32,,94,16,"HK1003 -Blackpoint D2 - Rev.0E DD30092021"
1-5033,SI20TPC1A8-30,"COMMISSIONING OF TP-C1A",5121,"HK1003-Rev.0E-3",TT_Task,"55902",-,-,-,0,TK_NotStart,19/03/2023,,25/03/2023,,"SI20TPC1A6-25 FS,SI20TPC1A8-26 FS","SI20TPC1A6-25,SI20TPC1A8-26","SI20UVM-8E27 FS,SI20GM-8E25 FS,SI20GM-8B27 FS","SI20UVM-8E27,SI20GM-8E25,SI20GM-8B27",137,,138,,32,,32,,93,128,"HK1003 -Blackpoint D2 - Rev.0E DD30092021"
1-5034,SI20TPC1A3-15,"MATERIAL FOR TP INTEGRATION ON SITE TP-C1A",5121,"HK1003-Rev.0E-3",TT_Mile,"55902",-,-,-,0,TK_NotStart,01/10/2021,,01/10/2021,,"SI20TPC1A2-5 FS","SI20TPC1A2-5","SI20TPC1A6-25 FS,SI20TPC1A6-20 FS,SI20TPC6A2-10 FS","SI20TPC1A6-25,SI20TPC1A6-20,SI20TPC6A2-10",60,,60,,14,,14,,31,3128,"HK1003 -Blackpoint D2 - Rev.0E DD30092021"
1-5035,SI20TPC1A6-25,"TERMINATION OF TP-C1A",5121,"HK1003-Rev.0E-3",TT_Task,"55902",-,-,-,0,TK_NotStart,29/10/2021,,11/11/2021,,"SI20TPC1A3-15 FS,SI20TPC1A6-20 FS,SI20TPC1A2-16 FS","SI20TPC1A3-15,SI20TPC1A6-20,SI20TPC1A2-16","SI20TPC1A8-30 FS,SI20TPC1A8-26 FS","SI20TPC1A8-30,SI20TPC1A8-26",64,,66,,15,,15,,36,4064,"HK1003 -Blackpoint D2 - Rev.0E DD30092021"
1-5036,SI20TPC1A2-5,"TECHNICAL CLARIFICATION WITH CUSTOMER / DESIGN FOR CONNECTION OF TP-C1A",5121,"HK1003-Rev.0E-3",TT_Task,"55902",-,-,-,100,TK_Complete,08/04/2021,08/04/2021,05/05/2021,05/05/2021,"SI-----1-05 FS","SI-----1-05","SI---1P2A530 FS,SI20TPC1A2-10 FS,SI20TPC1A3-15 FS,SI--5552-24 FS,SI---1P2A520 FS","SI---1P2A530,SI20TPC1A2-10,SI20TPC1A3-15,SI--5552-24,SI---1P2A520",35,35,39,39,8,8,9,9,7,,"HK1003 -Blackpoint D2 - Rev.0E DD30092021"
1-5037,SI20TPC1A2-10,"FINAL AGREEMENT WITH CUSTOMER / ACCESS TIME / REQUIREMENTS TO TP ALIGNED TP-C1A",5121,"HK1003-Rev.0E-3",TT_Mile,"55902",-,-,-,100,TK_Complete,06/05/2021,06/05/2021,06/05/2021,06/05/2021,"SI20TPC1A2-5 FS","SI20TPC1A2-5","SI20TPC1A6-20 FS,SI20TPC1A2-11 FS","SI20TPC1A6-20,SI20TPC1A2-11",39,39,39,39,9,9,9,9,11,,"HK1003 -Blackpoint D2 - Rev.0E DD30092021"
1-5038,SI20TPC1A6-20,"INSTALLATION OF CONNECTION MATERIAL IN CUSTOMER SITE TP-C1A",5121,"HK1003-Rev.0E-3",TT_Task,"55902",-,-,-,0,TK_NotStart,01/10/2021,,28/10/2021,,"SI20TPC1A2-10 FS,SI20TPC1A3-15 FS,SI20TPC1A2-11 FS,SI20TP-201& FS","SI20TPC1A2-10,SI20TPC1A3-15,SI20TPC1A2-11,SI20TP-201&","SI20TPC1A6-25 FS,SI20TPC1A2-16 FS","SI20TPC1A6-25,SI20TPC1A2-16",60,,64,,14,,15,,31,4064,"HK1003 -Blackpoint D2 - Rev.0E DD30092021"
1-5039,SI20TPC1A2-11,"UPDATE OF TRANSITION PLAN TP-C1A",5121,"HK1003-Rev.0E-3",TT_Task,"55902",-,-,-,100,TK_Complete,06/05/2021,06/05/2021,12/05/2021,12/05/2021,"SI20TPC1A2-10 FS","SI20TPC1A2-10","SI20TPC1A6-20 FS","SI20TPC1A6-20",39,39,40,40,9,9,9,9,11,,"HK1003 -Blackpoint D2 - Rev.0E DD30092021"
1-5040,SI20TPC1A2-16,"ALL RELEVANT PERMITS & LOTO AVAILABLE FROM CUSTOMER TP-C1A",5121,"HK1003-Rev.0E-3",TT_Mile,"55902",-,-,-,0,TK_NotStart,29/10/2021,,29/10/2021,,"SI20TPC1A6-20 FS","SI20TPC1A6-20","SI20TPC1A6-25 FS","SI20TPC1A6-25",64,,64,,15,,15,,36,4064,"HK1003 -Blackpoint D2 - Rev.0E DD30092021"
1-5041,SI20TPC1A8-26,"MEDIA  AVAILABLE TP-C1A",5121,"HK1003-Rev.0E-3",TT_Mile,"55902",-,-,-,0,TK_NotStart,19/03/2023,,19/03/2023,,"SI20TPC1A6-25 FS","SI20TPC1A6-25","SI20TPC1A8-30 FS","SI20TPC1A8-30",137,,137,,32,,32,,93,128,"HK1003 -Blackpoint D2 - Rev.0E DD30092021"
1-5042,SI20TPI16A8-30,"COMMISSIONING OF TP-I16",5121,"HK1003-Rev.0E-3",TT_Task,"55902",-,-,-,0,TK_NotStart,09/06/2023,,15/06/2023,,"SI20TPI16A7-25 FS,SI20TPI16A8-26 FS","SI20TPI16A7-25,SI20TPI16A8-26","SI20HSJ8-26 FS","SI20HSJ8-26",148,,149,,34,,34,,98,64,"HK1003 -Blackpoint D2 - Rev.0E DD30092021"
1-5043,SI20TPI16A3-15,"MATERIAL FOR TP INTEGRATION ON SITE TP-I16",5121,"HK1003-Rev.0E-3",TT_Mile,"55902",-,-,-,0,TK_NotStart,04/05/2022,,04/05/2022,,"SI20TPI16A2-5 FS","SI20TPI16A2-5","SI20TPI16A7-25 FS,SI20TPI16A7-20 FS","SI20TPI16A7-25,SI20TPI16A7-20",91,,91,,21,,21,,62,2936,"HK1003 -Blackpoint D2 - Rev.0E DD30092021"
1-5044,SI20TPI16A7-25,"TERMINATION OF TP-I16",5121,"HK1003-Rev.0E-3",TT_Task,"55902",-,-,-,0,TK_NotStart,01/06/2022,,14/06/2022,,"SI20TPI16A3-15 FS,SI20TPI16A7-20 FS,SI20TPI16A2-16 FS","SI20TPI16A3-15,SI20TPI16A7-20,SI20TPI16A2-16","SI20TPI16A8-30 FS,SI20TPI16A8-26 FS","SI20TPI16A8-30,SI20TPI16A8-26",95,,97,,22,,22,,68,2936,"HK1003 -Blackpoint D2 - Rev.0E DD30092021"
1-5045,SI20TPI16A2-5,"TECHNICAL CLARIFICATION WITH CUSTOMER / DESIGN FOR CONNECTION OF TP-I16",5121,"HK1003-Rev.0E-3",TT_Task,"55902",-,-,-,100,TK_Complete,24/05/2021,24/05/2021,20/06/2021,20/06/2021,"SI-----1-05 FS","SI-----1-05","SI20TPI16A2-10 FS,SI20TPI16A3-15 FS","SI20TPI16A2-10,SI20TPI16A3-15",42,42,46,46,9,9,10,10,14,,"HK1003 -Blackpoint D2 - Rev.0E DD30092021"
1-5046,SI20TPI16A2-10,"FINAL AGREEMENT WITH CUSTOMER / ACCESS TIME / REQUIREMENTS TO TP ALIGNED TP-I16",5121,"HK1003-Rev.0E-3",TT_Mile,"55902",-,-,-,100,TK_Complete,21/06/2021,21/06/2021,21/06/2021,21/06/2021,"SI20TPI16A2-5 FS","SI20TPI16A2-5","SI20TPI16A7-20 FS,SI20TPI16A2-11 FS,SP20CJP2-70 FS","SI20TPI16A7-20,SI20TPI16A2-11,SP20CJP2-70",46,46,46,46,10,10,10,10,18,,"HK1003 -Blackpoint D2 - Rev.0E DD30092021"
1-5047,SI20TPI16A7-20,"INSTALLATION OF CONNECTION MATERIAL IN CUSTOMER SITE TP-I16",5121,"HK1003-Rev.0E-3",TT_Task,"55902",-,-,-,0,TK_NotStart,04/05/2022,,31/05/2022,,"SI20TPI16A2-10 FS,SI20TPI16A3-15 FS,SI20TPI16A2-11 FS,SI20UCA7-16 FS,SI20TP-244& FS","SI20TPI16A2-10,SI20TPI16A3-15,SI20TPI16A2-11,SI20UCA7-16,SI20TP-244&","SI20TPI16A7-25 FS,SI20TPI16A2-16 FS","SI20TPI16A7-25,SI20TPI16A2-16",91,,95,,21,,22,,62,2936,"HK1003 -Blackpoint D2 - Rev.0E DD30092021"
1-5048,SI20TPI16A2-11,"UPDATE OF TRANSITION PLAN TP-I16",5121,"HK1003-Rev.0E-3",TT_Task,"55902",-,-,-,0,TK_NotStart,09/02/2022,,15/02/2022,,"SI20TPI16A2-10 FS","SI20TPI16A2-10","SI20TPI16A7-20 FS","SI20TPI16A7-20",79,,80,,18,,18,,49,2936,"HK1003 -Blackpoint D2 - Rev.0E DD30092021"
1-5049,SI20TPI16A2-16,"ALL RELEVANT PERMITS & LOTO AVAILABLE FROM CUSTOMER TP-I16",5121,"HK1003-Rev.0E-3",TT_Mile,"55902",-,-,-,0,TK_NotStart,01/06/2022,,01/06/2022,,"SI20TPI16A7-20 FS","SI20TPI16A7-20","SI20TPI16A7-25 FS","SI20TPI16A7-25",95,,95,,22,,22,,68,2936,"HK1003 -Blackpoint D2 - Rev.0E DD30092021"
1-5050,SI20TPI16A8-26,"MEDIA  AVAILABLE TP-I16",5121,"HK1003-Rev.0E-3",TT_Mile,"55902",-,-,-,0,TK_NotStart,09/06/2023,,09/06/2023,,"SI20TPI16A7-25 FS","SI20TPI16A7-25","SI20TPI16A8-30 FS","SI20TPI16A8-30",148,,148,,34,,34,,98,64,"HK1003 -Blackpoint D2 - Rev.0E DD30092021"
1-5051,SI20TPI20A8-30,"COMMISSIONING OF TP-I20",5121,"HK1003-Rev.0E-3",TT_Task,"55902",-,-,-,0,TK_NotStart,22/03/2023,,28/03/2023,,"SI20TPI20A7-25 FS,SI20TPI20A8-26 FS","SI20TPI20A7-25,SI20TPI20A8-26","SI20LDK8B25 FS","SI20LDK8B25",137,,138,,32,,32,,93,80,"HK1003 -Blackpoint D2 - Rev.0E DD30092021"
1-5052,SI20TPI20A3-15,"MATERIAL FOR TP INTEGRATION ON SITE TP-I20",5121,"HK1003-Rev.0E-3",TT_Mile,"55902",-,-,-,0,TK_NotStart,04/05/2022,,04/05/2022,,"SI20TPI20A2-5 FS","SI20TPI20A2-5","SI20TPI20A7-25 FS,SI20TPI20A7-20 FS","SI20TPI20A7-25,SI20TPI20A7-20",91,,91,,21,,21,,62,2320,"HK1003 -Blackpoint D2 - Rev.0E DD30092021"
1-5053,SI20TPI20A7-25,"TERMINATION OF TP-I20",5121,"HK1003-Rev.0E-3",TT_Task,"55902",-,-,-,0,TK_NotStart,01/06/2022,,14/06/2022,,"SI20TPI20A3-15 FS,SI20TPI20A7-20 FS,SI20TPI20A2-16 FS","SI20TPI20A3-15,SI20TPI20A7-20,SI20TPI20A2-16","SI20TPI20A8-30 FS,SI20TPI20A8-26 FS","SI20TPI20A8-30,SI20TPI20A8-26",95,,97,,22,,22,,68,2320,"HK1003 -Blackpoint D2 - Rev.0E DD30092021"
1-5054,SI20TPI20A2-5,"TECHNICAL CLARIFICATION WITH CUSTOMER / DESIGN FOR CONNECTION OF TP-I20",5121,"HK1003-Rev.0E-3",TT_Task,"55902",-,-,-,100,TK_Complete,24/05/2021,24/05/2021,20/06/2021,20/06/2021,"SI-----1-05 FS","SI-----1-05","SI20TPI20A2-10 FS,SI20TPI20A3-15 FS","SI20TPI20A2-10,SI20TPI20A3-15",42,42,46,46,9,9,10,10,14,,"HK1003 -Blackpoint D2 - Rev.0E DD30092021"
1-5055,SI20TPI20A2-10,"FINAL AGREEMENT WITH CUSTOMER / ACCESS TIME / REQUIREMENTS TO TP ALIGNED TP-I20",5121,"HK1003-Rev.0E-3",TT_Mile,"55902",-,-,-,100,TK_Complete,21/06/2021,21/06/2021,21/06/2021,21/06/2021,"SI20TPI20A2-5 FS","SI20TPI20A2-5","SI20TPI20A7-20 FS,SI20TPI20A2-11 FS,SP20CJP2-70 FS","SI20TPI20A7-20,SI20TPI20A2-11,SP20CJP2-70",46,46,46,46,10,10,10,10,18,,"HK1003 -Blackpoint D2 - Rev.0E DD30092021"
1-5056,SI20TPI20A7-20,"INSTALLATION OF CONNECTION MATERIAL IN CUSTOMER SITE TP-I20",5121,"HK1003-Rev.0E-3",TT_Task,"55902",-,-,-,0,TK_NotStart,04/05/2022,,31/05/2022,,"SI20TPI20A2-10 FS,SI20TPI20A3-15 FS,SI20TPI20A2-11 FS,SI20UCA7-16 FS,SI20TP-245& FS","SI20TPI20A2-10,SI20TPI20A3-15,SI20TPI20A2-11,SI20UCA7-16,SI20TP-245&","SI20TPI20A7-25 FS,SI20TPI20A2-16 FS","SI20TPI20A7-25,SI20TPI20A2-16",91,,95,,21,,22,,62,2320,"HK1003 -Blackpoint D2 - Rev.0E DD30092021"
1-5057,SI20TPI20A2-11,"UPDATE OF TRANSITION PLAN TP-I20",5121,"HK1003-Rev.0E-3",TT_Task,"55902",-,-,-,0,TK_NotStart,09/02/2022,,15/02/2022,,"SI20TPI20A2-10 FS","SI20TPI20A2-10","SI20TPI20A7-20 FS","SI20TPI20A7-20",79,,80,,18,,18,,49,2320,"HK1003 -Blackpoint D2 - Rev.0E DD30092021"
1-5058,SI20TPI20A2-16,"ALL RELEVANT PERMITS & LOTO AVAILABLE FROM CUSTOMER TP-I20",5121,"HK1003-Rev.0E-3",TT_Mile,"55902",-,-,-,0,TK_NotStart,01/06/2022,,01/06/2022,,"SI20TPI20A7-20 FS","SI20TPI20A7-20","SI20TPI20A7-25 FS","SI20TPI20A7-25",95,,95,,22,,22,,68,2320,"HK1003 -Blackpoint D2 - Rev.0E DD30092021"
1-5059,SI20TPI20A8-26,"MEDIA  AVAILABLE TP-I20",5121,"HK1003-Rev.0E-3",TT_Mile,"55902",-,-,-,0,TK_NotStart,22/03/2023,,22/03/2023,,"SI20TPI20A7-25 FS","SI20TPI20A7-25","SI20TPI20A8-30 FS","SI20TPI20A8-30",137,,137,,32,,32,,93,80,"HK1003 -Blackpoint D2 - Rev.0E DD30092021"
1-5060,SI20TPC2A8-30,"COMMISSIONING OF TP-C2A",5121,"HK1003-Rev.0E-3",TT_Task,"55902",-,-,-,0,TK_NotStart,22/03/2023,,28/03/2023,,"SI20TPC2A6-25 FS,SI20TPC2A8-26 FS","SI20TPC2A6-25,SI20TPC2A8-26","SI20UVM-8E27 FS,SI20GM-8E25 FS,SI20GM-8B27 FS","SI20UVM-8E27,SI20GM-8E25,SI20GM-8B27",137,,138,,32,,32,,93,128,"HK1003 -Blackpoint D2 - Rev.0E DD30092021"
1-5061,SI20TPC2A3-15,"MATERIAL FOR TP INTEGRATION ON SITE TP-C2A",5121,"HK1003-Rev.0E-3",TT_Mile,"55902",-,-,-,0,TK_NotStart,29/03/2022,,29/03/2022,,"SI20TPC2A2-5 FS","SI20TPC2A2-5","SI20TPC2A6-25 FS,SI20TPC2A6-20 FS","SI20TPC2A6-25,SI20TPC2A6-20",86,,86,,20,,20,,54,2656,"HK1003 -Blackpoint D2 - Rev.0E DD30092021"
1-5062,SI20TPC2A6-25,"TERMINATION OF TP-C2A",5121,"HK1003-Rev.0E-3",TT_Task,"55902",-,-,-,0,TK_NotStart,26/04/2022,,09/05/2022,,"SI20TPC2A3-15 FS,SI20TPC2A6-20 FS,SI20TPC2A2-16 FS","SI20TPC2A3-15,SI20TPC2A6-20,SI20TPC2A2-16","SI20TPC2A8-30 FS,SI20TPC2A8-26 FS","SI20TPC2A8-30,SI20TPC2A8-26",90,,92,,21,,21,,59,2656,"HK1003 -Blackpoint D2 - Rev.0E DD30092021"
1-5063,SI20TPC2A2-5,"TECHNICAL CLARIFICATION WITH CUSTOMER / DESIGN FOR CONNECTION OF TP-C2A",5121,"HK1003-Rev.0E-3",TT_Task,"55902",-,-,-,100,TK_Complete,16/04/2021,16/04/2021,13/05/2021,13/05/2021,"SI-----1-05 FS","SI-----1-05","SI---1P2A530 FS,SI20TPC2A2-10 FS,SI20TPC2A3-15 FS,SI--5552-24 FS,SI---1P2A520 FS","SI---1P2A530,SI20TPC2A2-10,SI20TPC2A3-15,SI--5552-24,SI---1P2A520",36,36,40,40,8,8,9,9,9,,"HK1003 -Blackpoint D2 - Rev.0E DD30092021"
1-5064,SI20TPC2A2-10,"FINAL AGREEMENT WITH CUSTOMER / ACCESS TIME / REQUIREMENTS TO TP ALIGNED TP-C2A",5121,"HK1003-Rev.0E-3",TT_Mile,"55902",-,-,-,0,TK_NotStart,04/01/2022,,04/01/2022,,"SI20TPC2A2-5 FS","SI20TPC2A2-5","SI20TPC2A6-20 FS,SI20TPC2A2-11 FS","SI20TPC2A6-20,SI20TPC2A2-11",74,,74,,17,,17,,44,2656,"HK1003 -Blackpoint D2 - Rev.0E DD30092021"
1-5065,SI20TPC2A6-20,"INSTALLATION OF CONNECTION MATERIAL IN CUSTOMER SITE TP-C2A",5121,"HK1003-Rev.0E-3",TT_Task,"55902",-,-,-,0,TK_NotStart,29/03/2022,,25/04/2022,,"SI20TPC2A2-10 FS,SI20TPC2A3-15 FS,SI20TPC2A2-11 FS,SI20TP-202& FS,SI20UBY4-53 SS","SI20TPC2A2-10,SI20TPC2A3-15,SI20TPC2A2-11,SI20TP-202&,SI20UBY4-53","SI20TPC2A6-25 FS,SI20TPC2A2-16 FS","SI20TPC2A6-25,SI20TPC2A2-16",86,,90,,20,,21,,54,2656,"HK1003 -Blackpoint D2 - Rev.0E DD30092021"
1-5066,SI20TPC2A2-11,"UPDATE OF TRANSITION PLAN TP-C2A",5121,"HK1003-Rev.0E-3",TT_Task,"55902",-,-,-,0,TK_NotStart,04/01/2022,,10/01/2022,,"SI20TPC2A2-10 FS","SI20TPC2A2-10","SI20TPC2A6-20 FS","SI20TPC2A6-20",74,,75,,17,,17,,44,2656,"HK1003 -Blackpoint D2 - Rev.0E DD30092021"
1-5067,SI20TPC2A2-16,"ALL RELEVANT PERMITS & LOTO AVAILABLE FROM CUSTOMER TP-C2A",5121,"HK1003-Rev.0E-3",TT_Mile,"55902",-,-,-,0,TK_NotStart,26/04/2022,,26/04/2022,,"SI20TPC2A6-20 FS","SI20TPC2A6-20","SI20TPC2A6-25 FS","SI20TPC2A6-25",90,,90,,21,,21,,59,2656,"HK1003 -Blackpoint D2 - Rev.0E DD30092021"
1-5068,SI20TPC2A8-26,"MEDIA  AVAILABLE TP-C2A",5121,"HK1003-Rev.0E-3",TT_Mile,"55902",-,-,-,0,TK_NotStart,22/03/2023,,22/03/2023,,"SI20TPC2A6-25 FS","SI20TPC2A6-25","SI20TPC2A8-30 FS","SI20TPC2A8-30",137,,137,,32,,32,,93,128,"HK1003 -Blackpoint D2 - Rev.0E DD30092021"
1-5069,SI20TPC3A8-30,"COMMISSIONING OF TP-C3A",5121,"HK1003-Rev.0E-3",TT_Task,"55902",-,-,-,0,TK_NotStart,22/03/2023,,28/03/2023,,"SI20TPC3A6-25 FS,SI20TPC3A8-26 FS","SI20TPC3A6-25,SI20TPC3A8-26","SI20UVM-8E27 FS,SI20GM-8E25 FS,SI20GM-8B27 FS","SI20UVM-8E27,SI20GM-8E25,SI20GM-8B27",137,,138,,32,,32,,93,128,"HK1003 -Blackpoint D2 - Rev.0E DD30092021"
1-5070,SI20TPC3A3-15,"MATERIAL FOR TP INTEGRATION ON SITE TP-C3A",5121,"HK1003-Rev.0E-3",TT_Mile,"55902",-,-,-,0,TK_NotStart,14/02/2022,,14/02/2022,,"SI20TPC3A2-5 FS","SI20TPC3A2-5","SI20TPC3A6-25 FS,SI20TPC3A6-20 FS","SI20TPC3A6-25,SI20TPC3A6-20",80,,80,,18,,18,,49,3000,"HK1003 -Blackpoint D2 - Rev.0E DD30092021"
1-5071,SI20TPC3A6-25,"TERMINATION OF TP-C3A",5121,"HK1003-Rev.0E-3",TT_Task,"55902",-,-,-,0,TK_NotStart,14/03/2022,,27/03/2022,,"SI20TPC3A3-15 FS,SI20TPC3A6-20 FS,SI20TPC3A2-16 FS","SI20TPC3A3-15,SI20TPC3A6-20,SI20TPC3A2-16","SI20TPC3A8-30 FS,SI20TPC3A8-26 FS","SI20TPC3A8-30,SI20TPC3A8-26",84,,86,,19,,20,,52,3000,"HK1003 -Blackpoint D2 - Rev.0E DD30092021"
1-5072,SI20TPC3A2-5,"TECHNICAL CLARIFICATION WITH CUSTOMER / DESIGN FOR CONNECTION OF TP-C3A",5121,"HK1003-Rev.0E-3",TT_Task,"55902",-,-,-,100,TK_Complete,16/04/2021,16/04/2021,13/05/2021,13/05/2021,"SI-----1-05 FS","SI-----1-05","SI---1P2A530 FS,SI20TPC3A2-10 FS,SI20TPC3A3-15 FS,SI--5552-24 FS,SI---1P2A520 FS","SI---1P2A530,SI20TPC3A2-10,SI20TPC3A3-15,SI--5552-24,SI---1P2A520",36,36,40,40,8,8,9,9,9,,"HK1003 -Blackpoint D2 - Rev.0E DD30092021"
1-5073,SI20TPC3A2-10,"FINAL AGREEMENT WITH CUSTOMER / ACCESS TIME / REQUIREMENTS TO TP ALIGNED TP-C3A",5121,"HK1003-Rev.0E-3",TT_Mile,"55902",-,-,-,0,TK_NotStart,22/11/2021,,22/11/2021,,"SI20TPC3A2-5 FS","SI20TPC3A2-5","SI20TPC3A6-20 FS,SI20TPC3A2-11 FS","SI20TPC3A6-20,SI20TPC3A2-11",68,,68,,15,,15,,39,3000,"HK1003 -Blackpoint D2 - Rev.0E DD30092021"
1-5074,SI20TPC3A6-20,"INSTALLATION OF CONNECTION MATERIAL IN CUSTOMER SITE TP-C3A",5121,"HK1003-Rev.0E-3",TT_Task,"55902",-,-,-,0,TK_NotStart,14/02/2022,,13/03/2022,,"SI20TPC3A2-10 FS,SI20TPC3A3-15 FS,SI20TPC3A2-11 FS,SI20TP-203& FS,SI20UEY5-06 SS","SI20TPC3A2-10,SI20TPC3A3-15,SI20TPC3A2-11,SI20TP-203&,SI20UEY5-06","SI20TPC3A6-25 FS,SI20TPC3A2-16 FS","SI20TPC3A6-25,SI20TPC3A2-16",80,,84,,18,,19,,49,3000,"HK1003 -Blackpoint D2 - Rev.0E DD30092021"
1-5075,SI20TPC3A2-11,"UPDATE OF TRANSITION PLAN TP-C3A",5121,"HK1003-Rev.0E-3",TT_Task,"55902",-,-,-,0,TK_NotStart,22/11/2021,,28/11/2021,,"SI20TPC3A2-10 FS","SI20TPC3A2-10","SI20TPC3A6-20 FS","SI20TPC3A6-20",68,,69,,15,,16,,39,3000,"HK1003 -Blackpoint D2 - Rev.0E DD30092021"
1-5076,SI20TPC3A2-16,"ALL RELEVANT PERMITS & LOTO AVAILABLE FROM CUSTOMER TP-C3A",5121,"HK1003-Rev.0E-3",TT_Mile,"55902",-,-,-,0,TK_NotStart,14/03/2022,,14/03/2022,,"SI20TPC3A6-20 FS","SI20TPC3A6-20","SI20TPC3A6-25 FS","SI20TPC3A6-25",84,,84,,19,,19,,53,3000,"HK1003 -Blackpoint D2 - Rev.0E DD30092021"
1-5077,SI20TPC3A8-26,"MEDIA  AVAILABLE TP-C3A",5121,"HK1003-Rev.0E-3",TT_Mile,"55902",-,-,-,0,TK_NotStart,22/03/2023,,22/03/2023,,"SI20TPC3A6-25 FS","SI20TPC3A6-25","SI20TPC3A8-30 FS","SI20TPC3A8-30",137,,137,,32,,32,,93,128,"HK1003 -Blackpoint D2 - Rev.0E DD30092021"
1-5078,SI20TPC4A8-30,"COMMISSIONING OF TP-C4A",5121,"HK1003-Rev.0E-3",TT_Task,"55902",-,-,-,0,TK_NotStart,22/03/2023,,28/03/2023,,"SI20TPC4A6-25 FS,SI20TPC4A8-26 FS","SI20TPC4A6-25,SI20TPC4A8-26","SI20UVM-8E27 FS,SI20GM-8E25 FS,SI20GM-8B27 FS","SI20UVM-8E27,SI20GM-8E25,SI20GM-8B27",137,,138,,32,,32,,93,128,"HK1003 -Blackpoint D2 - Rev.0E DD30092021"
1-5079,SI20TPC4A3-15,"MATERIAL FOR TP INTEGRATION ON SITE TP-C4A",5121,"HK1003-Rev.0E-3",TT_Mile,"55902",-,-,-,0,TK_NotStart,06/01/2022,,06/01/2022,,"SI20TPC4A2-5 FS","SI20TPC4A2-5","SI20TPC4A6-25 FS,SI20TPC4A6-20 FS","SI20TPC4A6-25,SI20TPC4A6-20",74,,74,,17,,17,,44,3312,"HK1003 -Blackpoint D2 - Rev.0E DD30092021"
1-5080,SI20TPC4A6-25,"TERMINATION OF TP-C4A",5121,"HK1003-Rev.0E-3",TT_Task,"55902",-,-,-,0,TK_NotStart,03/02/2022,,16/02/2022,,"SI20TPC4A3-15 FS,SI20TPC4A6-20 FS,SI20TPC4A2-16 FS","SI20TPC4A3-15,SI20TPC4A6-20,SI20TPC4A2-16","SI20TPC4A8-30 FS,SI20TPC4A8-26 FS","SI20TPC4A8-30,SI20TPC4A8-26",78,,80,,18,,18,,48,3312,"HK1003 -Blackpoint D2 - Rev.0E DD30092021"
1-5081,SI20TPC4A2-5,"TECHNICAL CLARIFICATION WITH CUSTOMER / DESIGN FOR CONNECTION OF TP-C4A",5121,"HK1003-Rev.0E-3",TT_Task,"55902",-,-,-,100,TK_Complete,16/04/2021,16/04/2021,13/05/2021,13/05/2021,"SI-----1-05 FS","SI-----1-05","SI---1P2A530 FS,SI20TPC4A2-10 FS,SI20TPC4A3-15 FS,SI--5552-24 FS,SI---1P2A520 FS","SI---1P2A530,SI20TPC4A2-10,SI20TPC4A3-15,SI--5552-24,SI---1P2A520",36,36,40,40,8,8,9,9,9,,"HK1003 -Blackpoint D2 - Rev.0E DD30092021"
1-5082,SI20TPC4A2-10,"FINAL AGREEMENT WITH CUSTOMER / ACCESS TIME / REQUIREMENTS TO TP ALIGNED TP-C4A",5121,"HK1003-Rev.0E-3",TT_Mile,"55902",-,-,-,0,TK_NotStart,14/10/2021,,14/10/2021,,"SI20TPC4A2-5 FS","SI20TPC4A2-5","SI20TPC4A6-20 FS,SI20TPC4A2-11 FS","SI20TPC4A6-20,SI20TPC4A2-11",62,,62,,14,,14,,34,3928,"HK1003 -Blackpoint D2 - Rev.0E DD30092021"
1-5083,SI20TPC4A6-20,"INSTALLATION OF CONNECTION MATERIAL IN CUSTOMER SITE TP-C4A",5121,"HK1003-Rev.0E-3",TT_Task,"55902",-,-,-,0,TK_NotStart,06/01/2022,,02/02/2022,,"SI20TPC4A2-10 FS,SI20TPC4A3-15 FS,SI20TPC4A2-11 FS,SI20TP-204& FS","SI20TPC4A2-10,SI20TPC4A3-15,SI20TPC4A2-11,SI20TP-204&","SI20TPC4A6-25 FS,SI20TPC4A2-16 FS","SI20TPC4A6-25,SI20TPC4A2-16",74,,78,,17,,18,,44,3312,"HK1003 -Blackpoint D2 - Rev.0E DD30092021"
1-5084,SI20TPC4A2-11,"UPDATE OF TRANSITION PLAN TP-C4A",5121,"HK1003-Rev.0E-3",TT_Task,"55902",-,-,-,0,TK_NotStart,14/10/2021,,20/10/2021,,"SI20TPC4A2-10 FS","SI20TPC4A2-10","SI20TPC4A6-20 FS","SI20TPC4A6-20",62,,63,,14,,14,,34,3928,"HK1003 -Blackpoint D2 - Rev.0E DD30092021"
1-5085,SI20TPC4A2-16,"ALL RELEVANT PERMITS & LOTO AVAILABLE FROM CUSTOMER TP-C4A",5121,"HK1003-Rev.0E-3",TT_Mile,"55902",-,-,-,0,TK_NotStart,03/02/2022,,03/02/2022,,"SI20TPC4A6-20 FS","SI20TPC4A6-20","SI20TPC4A6-25 FS","SI20TPC4A6-25",78,,78,,18,,18,,48,3312,"HK1003 -Blackpoint D2 - Rev.0E DD30092021"
1-5086,SI20TPC4A8-26,"MEDIA  AVAILABLE TP-C4A",5121,"HK1003-Rev.0E-3",TT_Mile,"55902",-,-,-,0,TK_NotStart,22/03/2023,,22/03/2023,,"SI20TPC4A6-25 FS","SI20TPC4A6-25","SI20TPC4A8-30 FS","SI20TPC4A8-30",137,,137,,32,,32,,93,128,"HK1003 -Blackpoint D2 - Rev.0E DD30092021"
1-5087,SI20TPC5A8-30,"COMMISSIONING OF TP-C5A",5121,"HK1003-Rev.0E-3",TT_Task,"55902",-,-,-,0,TK_NotStart,22/03/2023,,28/03/2023,,"SI20TPC5A6-25 FS,SI20TPC5A8-26 FS","SI20TPC5A6-25,SI20TPC5A8-26","SI20UVM-8E27 FS,SI20GM-8E25 FS,SI20GM-8B27 FS","SI20UVM-8E27,SI20GM-8E25,SI20GM-8B27",137,,138,,32,,32,,93,128,"HK1003 -Blackpoint D2 - Rev.0E DD30092021"
1-5088,SI20TPC5A3-15,"MATERIAL FOR TP INTEGRATION ON SITE TP-C5A",5121,"HK1003-Rev.0E-3",TT_Mile,"55902",-,-,-,0,TK_NotStart,05/05/2022,,05/05/2022,,"SI20TPC5A2-5 FS","SI20TPC5A2-5","SI20TPC5A6-25 FS,SI20TPC5A6-20 FS","SI20TPC5A6-25,SI20TPC5A6-20",91,,91,,21,,21,,63,2360,"HK1003 -Blackpoint D2 - Rev.0E DD30092021"
1-5089,SI20TPC5A6-25,"TERMINATION OF TP-C5A",5121,"HK1003-Rev.0E-3",TT_Task,"55902",-,-,-,0,TK_NotStart,02/06/2022,,15/06/2022,,"SI20TPC5A3-15 FS,SI20TPC5A6-20 FS,SI20TPC5A2-16 FS","SI20TPC5A3-15,SI20TPC5A6-20,SI20TPC5A2-16","SI20TPC5A8-30 FS,SI20TPC5A8-26 FS","SI20TPC5A8-30,SI20TPC5A8-26",95,,97,,22,,22,,68,2360,"HK1003 -Blackpoint D2 - Rev.0E DD30092021"
1-5090,SI20TPC5A2-5,"TECHNICAL CLARIFICATION WITH CUSTOMER / DESIGN FOR CONNECTION OF TP-C5A",5121,"HK1003-Rev.0E-3",TT_Task,"55902",-,-,-,100,TK_Complete,16/04/2021,16/04/2021,13/05/2021,13/05/2021,"SI-----1-05 FS","SI-----1-05","SI---1P2A530 FS,SI20TPC5A2-10 FS,SI20TPC5A3-15 FS,SI--5552-24 FS,SI---1P2A520 FS","SI---1P2A530,SI20TPC5A2-10,SI20TPC5A3-15,SI--5552-24,SI---1P2A520",36,36,40,40,8,8,9,9,9,,"HK1003 -Blackpoint D2 - Rev.0E DD30092021"
1-5091,SI20TPC5A2-10,"FINAL AGREEMENT WITH CUSTOMER / ACCESS TIME / REQUIREMENTS TO TP ALIGNED TP-C5A",5121,"HK1003-Rev.0E-3",TT_Mile,"55902",-,-,-,0,TK_NotStart,10/02/2022,,10/02/2022,,"SI20TPC5A2-5 FS","SI20TPC5A2-5","SI20TPC5A6-20 FS,SI20TPC5A2-11 FS","SI20TPC5A6-20,SI20TPC5A2-11",79,,79,,18,,18,,49,2360,"HK1003 -Blackpoint D2 - Rev.0E DD30092021"
1-5092,SI20TPC5A6-20,"INSTALLATION OF CONNECTION MATERIAL IN CUSTOMER SITE TP-C5A",5121,"HK1003-Rev.0E-3",TT_Task,"55902",-,-,-,0,TK_NotStart,05/05/2022,,01/06/2022,,"SI20TPC5A2-10 FS,SI20TPC5A3-15 FS,SI20TPC5A2-11 FS,SI20TP-205& FS,SI20UBF615 SS","SI20TPC5A2-10,SI20TPC5A3-15,SI20TPC5A2-11,SI20TP-205&,SI20UBF615","SI20TPC5A6-25 FS,SI20TPC5A2-16 FS","SI20TPC5A6-25,SI20TPC5A2-16",91,,95,,21,,22,,63,2360,"HK1003 -Blackpoint D2 - Rev.0E DD30092021"
1-5093,SI20TPC5A2-11,"UPDATE OF TRANSITION PLAN TP-C5A",5121,"HK1003-Rev.0E-3",TT_Task,"55902",-,-,-,0,TK_NotStart,10/02/2022,,16/02/2022,,"SI20TPC5A2-10 FS","SI20TPC5A2-10","SI20TPC5A6-20 FS","SI20TPC5A6-20",79,,80,,18,,18,,49,2360,"HK1003 -Blackpoint D2 - Rev.0E DD30092021"
1-5094,SI20TPC5A2-16,"ALL RELEVANT PERMITS & LOTO AVAILABLE FROM CUSTOMER TP-C5A",5121,"HK1003-Rev.0E-3",TT_Mile,"55902",-,-,-,0,TK_NotStart,02/06/2022,,02/06/2022,,"SI20TPC5A6-20 FS","SI20TPC5A6-20","SI20TPC5A6-25 FS","SI20TPC5A6-25",95,,95,,22,,22,,68,2360,"HK1003 -Blackpoint D2 - Rev.0E DD30092021"
1-5095,SI20TPC5A8-26,"MEDIA  AVAILABLE TP-C5A",5121,"HK1003-Rev.0E-3",TT_Mile,"55902",-,-,-,0,TK_NotStart,22/03/2023,,22/03/2023,,"SI20TPC5A6-25 FS","SI20TPC5A6-25","SI20TPC5A8-30 FS","SI20TPC5A8-30",137,,137,,32,,32,,93,128,"HK1003 -Blackpoint D2 - Rev.0E DD30092021"
1-5096,SI20TPC6A8-30,"COMMISSIONING OF TP-C6A",5121,"HK1003-Rev.0E-3",TT_Task,"55902",-,-,-,0,TK_NotStart,07/02/2023,,13/02/2023,,"SI20TPC6A6-25 FS,SI20TPC6A8-26 FS","SI20TPC6A6-25,SI20TPC6A8-26","SI20UVM-8E27 FS,SI20GM-8B25 FS,SI20GM-8E25 FS,SI20GM-8B27 FS","SI20UVM-8E27,SI20GM-8B25,SI20GM-8E25,SI20GM-8B27",131,,132,,30,,30,,90,296,"HK1003 -Blackpoint D2 - Rev.0E DD30092021"
1-5097,SI20TPC6A3-15,"MATERIAL FOR TP INTEGRATION ON SITE TP-C6A",5121,"HK1003-Rev.0E-3",TT_Mile,"55902",-,-,-,0,TK_NotStart,07/01/2022,,07/01/2022,,"SI20TPC6A2-5 FS","SI20TPC6A2-5","SI20TPC6A6-25 FS,SI20TPC6A6-20 FS","SI20TPC6A6-25,SI20TPC6A6-20",74,,74,,17,,17,,44,3128,"HK1003 -Blackpoint D2 - Rev.0E DD30092021"
1-5098,SI20TPC6A6-25,"TERMINATION OF TP-C6A",5121,"HK1003-Rev.0E-3",TT_Task,"55902",-,-,-,0,TK_NotStart,04/02/2022,,17/02/2022,,"SI20TPC6A3-15 FS,SI20TPC6A6-20 FS,SI20TPC6A2-16 FS","SI20TPC6A3-15,SI20TPC6A6-20,SI20TPC6A2-16","SI20TPC6A8-30 FS,SI20TPC6A8-26 FS","SI20TPC6A8-30,SI20TPC6A8-26",78,,80,,18,,18,,48,3128,"HK1003 -Blackpoint D2 - Rev.0E DD30092021"
1-5099,SI20TPC6A2-5,"TECHNICAL CLARIFICATION WITH CUSTOMER / DESIGN FOR CONNECTION OF TP-C6A",5121,"HK1003-Rev.0E-3",TT_Task,"55902",-,-,-,100,TK_Complete,16/04/2021,16/04/2021,13/05/2021,13/05/2021,"SI-----1-05 FS","SI-----1-05","SI---1P2A530 FS,SI20TPC6A2-10 FS,SI20TPC6A3-15 FS,SI--5552-24 FS,SI---1P2A520 FS","SI---1P2A530,SI20TPC6A2-10,SI20TPC6A3-15,SI--5552-24,SI---1P2A520",36,36,40,40,8,8,9,9,9,,"HK1003 -Blackpoint D2 - Rev.0E DD30092021"
1-5100,SI20TPC6A2-10,"FINAL AGREEMENT WITH CUSTOMER / ACCESS TIME / REQUIREMENTS TO TP ALIGNED TP-C6A",5121,"HK1003-Rev.0E-3",TT_Mile,"55902",-,-,-,0,TK_NotStart,15/10/2021,,15/10/2021,,"SI20TPC6A2-5 FS,SI20TPC1A3-15 FS","SI20TPC6A2-5,SI20TPC1A3-15","SI20TPC6A6-20 FS,SI20TPC6A2-11 FS,SI20TPC7A2-10 FS","SI20TPC6A6-20,SI20TPC6A2-11,SI20TPC7A2-10",62,,62,,14,,14,,34,3128,"HK1003 -Blackpoint D2 - Rev.0E DD30092021"
1-5101,SI20TPC6A6-20,"INSTALLATION OF CONNECTION MATERIAL IN CUSTOMER SITE TP-C6A",5121,"HK1003-Rev.0E-3",TT_Task,"55902",-,-,-,0,TK_NotStart,07/01/2022,,03/02/2022,,"SI20TPC6A2-10 FS,SI20TPC6A3-15 FS,SI20TPC6A2-11 FS,SI20TP-206& FS","SI20TPC6A2-10,SI20TPC6A3-15,SI20TPC6A2-11,SI20TP-206&","SI20TPC6A6-25 FS,SI20TPC6A2-16 FS","SI20TPC6A6-25,SI20TPC6A2-16",74,,78,,17,,18,,44,3128,"HK1003 -Blackpoint D2 - Rev.0E DD30092021"
1-5102,SI20TPC6A2-11,"UPDATE OF TRANSITION PLAN TP-C6A",5121,"HK1003-Rev.0E-3",TT_Task,"55902",-,-,-,0,TK_NotStart,15/10/2021,,21/10/2021,,"SI20TPC6A2-10 FS","SI20TPC6A2-10","SI20TPC6A6-20 FS","SI20TPC6A6-20",62,,63,,14,,14,,34,3128,"HK1003 -Blackpoint D2 - Rev.0E DD30092021"
1-5103,SI20TPC6A2-16,"ALL RELEVANT PERMITS & LOTO AVAILABLE FROM CUSTOMER TP-C6A",5121,"HK1003-Rev.0E-3",TT_Mile,"55902",-,-,-,0,TK_NotStart,04/02/2022,,04/02/2022,,"SI20TPC6A6-20 FS","SI20TPC6A6-20","SI20TPC6A6-25 FS","SI20TPC6A6-25",78,,78,,18,,18,,48,3128,"HK1003 -Blackpoint D2 - Rev.0E DD30092021"
1-5104,SI20TPC6A8-26,"MEDIA  AVAILABLE TP-C6A",5121,"HK1003-Rev.0E-3",TT_Mile,"55902",-,-,-,0,TK_NotStart,07/02/2023,,07/02/2023,,"SI20TPC6A6-25 FS","SI20TPC6A6-25","SI20TPC6A8-30 FS","SI20TPC6A8-30",131,,131,,30,,30,,90,296,"HK1003 -Blackpoint D2 - Rev.0E DD30092021"
1-5105,SI20TPC7A8-30,"COMMISSIONING OF TP-C7A",5121,"HK1003-Rev.0E-3",TT_Task,"55902",-,-,-,0,TK_NotStart,22/03/2023,,28/03/2023,,"SI20TPC7A6-25 FS,SI20TPC7A8-26 FS","SI20TPC7A6-25,SI20TPC7A8-26","SI20UVM-8E27 FS,SI20GM-8E25 FS,SI20GM-8B27 FS","SI20UVM-8E27,SI20GM-8E25,SI20GM-8B27",137,,138,,32,,32,,93,128,"HK1003 -Blackpoint D2 - Rev.0E DD30092021"
1-5106,SI20TPC7A3-15,"MATERIAL FOR TP INTEGRATION ON SITE TP-C7A",5121,"HK1003-Rev.0E-3",TT_Mile,"55902",-,-,-,0,TK_NotStart,07/01/2022,,07/01/2022,,"SI20TPC7A2-5 FS","SI20TPC7A2-5","SI20TPC7A6-25 FS,SI20TPC7A6-20 FS","SI20TPC7A6-25,SI20TPC7A6-20",74,,74,,17,,17,,44,3304,"HK1003 -Blackpoint D2 - Rev.0E DD30092021"
1-5107,SI20TPC7A6-25,"TERMINATION OF TP-C7A",5121,"HK1003-Rev.0E-3",TT_Task,"55902",-,-,-,0,TK_NotStart,04/02/2022,,17/02/2022,,"SI20TPC7A3-15 FS,SI20TPC7A6-20 FS,SI20TPC7A2-16 FS","SI20TPC7A3-15,SI20TPC7A6-20,SI20TPC7A2-16","SI20TPC7A8-30 FS,SI20TPC7A8-26 FS","SI20TPC7A8-30,SI20TPC7A8-26",78,,80,,18,,18,,48,3304,"HK1003 -Blackpoint D2 - Rev.0E DD30092021"
1-5108,SI20TPC7A2-5,"TECHNICAL CLARIFICATION WITH CUSTOMER / DESIGN FOR CONNECTION OF TP-C7A",5121,"HK1003-Rev.0E-3",TT_Task,"55902",-,-,-,100,TK_Complete,16/04/2021,16/04/2021,13/05/2021,13/05/2021,"SI-----1-05 FS","SI-----1-05","SI---1P2A530 FS,SI20TPC7A2-10 FS,SI20TPC7A3-15 FS,SI--5552-24 FS,SI---1P2A520 FS","SI---1P2A530,SI20TPC7A2-10,SI20TPC7A3-15,SI--5552-24,SI---1P2A520",36,36,40,40,8,8,9,9,9,,"HK1003 -Blackpoint D2 - Rev.0E DD30092021"
1-5109,SI20TPC7A2-10,"FINAL AGREEMENT WITH CUSTOMER / ACCESS TIME / REQUIREMENTS TO TP ALIGNED TP-C7A",5121,"HK1003-Rev.0E-3",TT_Mile,"55902",-,-,-,0,TK_NotStart,15/10/2021,,15/10/2021,,"SI20TPC7A2-5 FS,SI20TPC6A2-10 FS","SI20TPC7A2-5,SI20TPC6A2-10","SI20TPC7A6-20 FS,SI20TPC7A2-11 FS","SI20TPC7A6-20,SI20TPC7A2-11",62,,62,,14,,14,,34,3304,"HK1003 -Blackpoint D2 - Rev.0E DD30092021"
1-5110,SI20TPC7A6-20,"INSTALLATION OF CONNECTION MATERIAL IN CUSTOMER SITE TP-C7A",5121,"HK1003-Rev.0E-3",TT_Task,"55902",-,-,-,0,TK_NotStart,07/01/2022,,03/02/2022,,"SI20TPC7A2-10 FS,SI20TPC7A3-15 FS,SI20TPC7A2-11 FS,SI20TP-207& FS","SI20TPC7A2-10,SI20TPC7A3-15,SI20TPC7A2-11,SI20TP-207&","SI20TPC7A6-25 FS,SI20TPC7A2-16 FS","SI20TPC7A6-25,SI20TPC7A2-16",74,,78,,17,,18,,44,3304,"HK1003 -Blackpoint D2 - Rev.0E DD30092021"
1-5111,SI20TPC7A2-11,"UPDATE OF TRANSITION PLAN TP-C7A",5121,"HK1003-Rev.0E-3",TT_Task,"55902",-,-,-,0,TK_NotStart,15/10/2021,,21/10/2021,,"SI20TPC7A2-10 FS","SI20TPC7A2-10","SI20TPC7A6-20 FS","SI20TPC7A6-20",62,,63,,14,,14,,34,3304,"HK1003 -Blackpoint D2 - Rev.0E DD30092021"
1-5112,SI20TPC7A2-16,"ALL RELEVANT PERMITS & LOTO AVAILABLE FROM CUSTOMER TP-C7A",5121,"HK1003-Rev.0E-3",TT_Mile,"55902",-,-,-,0,TK_NotStart,04/02/2022,,04/02/2022,,"SI20TPC7A6-20 FS","SI20TPC7A6-20","SI20TPC7A6-25 FS","SI20TPC7A6-25",78,,78,,18,,18,,48,3304,"HK1003 -Blackpoint D2 - Rev.0E DD30092021"
1-5113,SI20TPC7A8-26,"MEDIA  AVAILABLE TP-C7A",5121,"HK1003-Rev.0E-3",TT_Mile,"55902",-,-,-,0,TK_NotStart,22/03/2023,,22/03/2023,,"SI20TPC7A6-25 FS","SI20TPC7A6-25","SI20TPC7A8-30 FS","SI20TPC7A8-30",137,,137,,32,,32,,93,128,"HK1003 -Blackpoint D2 - Rev.0E DD30092021"
1-5114,SI20TPC8A8-30,"COMMISSIONING OF TP-C8A",5121,"HK1003-Rev.0E-3",TT_Task,"55902",-,-,-,0,TK_NotStart,07/02/2023,,13/02/2023,,"SI20TPC8A6-25 FS,SI20TPC8A8-26 FS","SI20TPC8A6-25,SI20TPC8A8-26","SI20UVM-8E27 FS,SI20GM-8B25 FS,SI20GM-8E25 FS,SI20GM-8B27 FS","SI20UVM-8E27,SI20GM-8B25,SI20GM-8E25,SI20GM-8B27",131,,132,,30,,30,,90,296,"HK1003 -Blackpoint D2 - Rev.0E DD30092021"
1-5115,SI20TPC8A3-15,"MATERIAL FOR TP INTEGRATION ON SITE TP-C8A",5121,"HK1003-Rev.0E-3",TT_Mile,"55902",-,-,-,0,TK_NotStart,05/05/2022,,05/05/2022,,"SI20TPC8A2-5 FS","SI20TPC8A2-5","SI20TPC8A6-25 FS,SI20TPC8A6-20 FS","SI20TPC8A6-25,SI20TPC8A6-20",91,,91,,21,,21,,63,2184,"HK1003 -Blackpoint D2 - Rev.0E DD30092021"
1-5116,SI20TPC8A6-25,"TERMINATION OF TP-C8A",5121,"HK1003-Rev.0E-3",TT_Task,"55902",-,-,-,0,TK_NotStart,02/06/2022,,15/06/2022,,"SI20TPC8A3-15 FS,SI20TPC8A6-20 FS,SI20TPC8A2-16 FS","SI20TPC8A3-15,SI20TPC8A6-20,SI20TPC8A2-16","SI20TPC8A8-30 FS,SI20TPC8A8-26 FS","SI20TPC8A8-30,SI20TPC8A8-26",95,,97,,22,,22,,68,2184,"HK1003 -Blackpoint D2 - Rev.0E DD30092021"
1-5117,SI20TPC8A2-5,"TECHNICAL CLARIFICATION WITH CUSTOMER / DESIGN FOR CONNECTION OF TP-C8A",5121,"HK1003-Rev.0E-3",TT_Task,"55902",-,-,-,100,TK_Complete,16/04/2021,16/04/2021,13/05/2021,13/05/2021,"SI-----1-05 FS","SI-----1-05","SI---1P2A530 FS,SI20TPC8A2-10 FS,SI20TPC8A3-15 FS,SI--5552-24 FS,SI---1P2A520 FS","SI---1P2A530,SI20TPC8A2-10,SI20TPC8A3-15,SI--5552-24,SI---1P2A520",36,36,40,40,8,8,9,9,9,,"HK1003 -Blackpoint D2 - Rev.0E DD30092021"
1-5118,SI20TPC8A2-10,"FINAL AGREEMENT WITH CUSTOMER / ACCESS TIME / REQUIREMENTS TO TP ALIGNED TP-C8A",5121,"HK1003-Rev.0E-3",TT_Mile,"55902",-,-,-,0,TK_NotStart,10/02/2022,,10/02/2022,,"SI20TPC8A2-5 FS","SI20TPC8A2-5","SI20TPC8A6-20 FS,SI20TPC8A2-11 FS","SI20TPC8A6-20,SI20TPC8A2-11",79,,79,,18,,18,,49,2184,"HK1003 -Blackpoint D2 - Rev.0E DD30092021"
1-5119,SI20TPC8A6-20,"INSTALLATION OF CONNECTION MATERIAL IN CUSTOMER SITE TP-C8A",5121,"HK1003-Rev.0E-3",TT_Task,"55902",-,-,-,0,TK_NotStart,05/05/2022,,01/06/2022,,"SI20TPC8A2-10 FS,SI20TPC8A3-15 FS,SI20TPC8A2-11 FS,SI20TP-208& FS,SI20UBF615 SS","SI20TPC8A2-10,SI20TPC8A3-15,SI20TPC8A2-11,SI20TP-208&,SI20UBF615","SI20TPC8A6-25 FS,SI20TPC8A2-16 FS","SI20TPC8A6-25,SI20TPC8A2-16",91,,95,,21,,22,,63,2184,"HK1003 -Blackpoint D2 - Rev.0E DD30092021"
1-5120,SI20TPC8A2-11,"UPDATE OF TRANSITION PLAN TP-C8A",5121,"HK1003-Rev.0E-3",TT_Task,"55902",-,-,-,0,TK_NotStart,10/02/2022,,16/02/2022,,"SI20TPC8A2-10 FS","SI20TPC8A2-10","SI20TPC8A6-20 FS","SI20TPC8A6-20",79,,80,,18,,18,,49,2184,"HK1003 -Blackpoint D2 - Rev.0E DD30092021"
1-5121,SI20TPC8A2-16,"ALL RELEVANT PERMITS & LOTO AVAILABLE FROM CUSTOMER TP-C8A",5121,"HK1003-Rev.0E-3",TT_Mile,"55902",-,-,-,0,TK_NotStart,02/06/2022,,02/06/2022,,"SI20TPC8A6-20 FS","SI20TPC8A6-20","SI20TPC8A6-25 FS","SI20TPC8A6-25",95,,95,,22,,22,,68,2184,"HK1003 -Blackpoint D2 - Rev.0E DD30092021"
1-5122,SI20TPC8A8-26,"MEDIA  AVAILABLE TP-C8A",5121,"HK1003-Rev.0E-3",TT_Mile,"55902",-,-,-,0,TK_NotStart,07/02/2023,,07/02/2023,,"SI20TPC8A6-25 FS","SI20TPC8A6-25","SI20TPC8A8-30 FS","SI20TPC8A8-30",131,,131,,30,,30,,90,296,"HK1003 -Blackpoint D2 - Rev.0E DD30092021"
1-5123,SI20TPC9A8-30,"COMMISSIONING OF TP-C9A",5121,"HK1003-Rev.0E-3",TT_Task,"55902",-,-,-,0,TK_NotStart,07/02/2023,,13/02/2023,,"SI20TPC9A6-25 FS,SI20TPC9A8-26 FS","SI20TPC9A6-25,SI20TPC9A8-26","SI20UVM-8E27 FS,SI20GM-8B25 FS,SI20GM-8E25 FS,SI20GM-8B27 FS","SI20UVM-8E27,SI20GM-8B25,SI20GM-8E25,SI20GM-8B27",131,,132,,30,,30,,90,296,"HK1003 -Blackpoint D2 - Rev.0E DD30092021"
1-5124,SI20TPC9A3-15,"MATERIAL FOR TP INTEGRATION ON SITE TP-C9A",5121,"HK1003-Rev.0E-3",TT_Mile,"55902",-,-,-,0,TK_NotStart,05/05/2022,,05/05/2022,,"SI20TPC9A2-5 FS","SI20TPC9A2-5","SI20TPC9A6-25 FS,SI20TPC9A6-20 FS","SI20TPC9A6-25,SI20TPC9A6-20",91,,91,,21,,21,,63,2184,"HK1003 -Blackpoint D2 - Rev.0E DD30092021"
1-5125,SI20TPC9A6-25,"TERMINATION OF TP-C9A",5121,"HK1003-Rev.0E-3",TT_Task,"55902",-,-,-,0,TK_NotStart,02/06/2022,,15/06/2022,,"SI20TPC9A3-15 FS,SI20TPC9A6-20 FS,SI20TPC9A2-16 FS","SI20TPC9A3-15,SI20TPC9A6-20,SI20TPC9A2-16","SI20TPC9A8-30 FS,SI20TPC9A8-26 FS","SI20TPC9A8-30,SI20TPC9A8-26",95,,97,,22,,22,,68,2184,"HK1003 -Blackpoint D2 - Rev.0E DD30092021"
1-5126,SI20TPC9A2-5,"TECHNICAL CLARIFICATION WITH CUSTOMER / DESIGN FOR CONNECTION OF TP-C9A",5121,"HK1003-Rev.0E-3",TT_Task,"55902",-,-,-,100,TK_Complete,16/04/2021,16/04/2021,13/05/2021,13/05/2021,"SI-----1-05 FS","SI-----1-05","SI---1P2A530 FS,SI20TPC9A2-10 FS,SI20TPC9A3-15 FS,SI--5552-24 FS,SI---1P2A520 FS","SI---1P2A530,SI20TPC9A2-10,SI20TPC9A3-15,SI--5552-24,SI---1P2A520",36,36,40,40,8,8,9,9,9,,"HK1003 -Blackpoint D2 - Rev.0E DD30092021"
1-5127,SI20TPC9A2-10,"FINAL AGREEMENT WITH CUSTOMER / ACCESS TIME / REQUIREMENTS TO TP ALIGNED TP-C9A",5121,"HK1003-Rev.0E-3",TT_Mile,"55902",-,-,-,0,TK_NotStart,10/02/2022,,10/02/2022,,"SI20TPC9A2-5 FS","SI20TPC9A2-5","SI20TPC9A6-20 FS,SI20TPC9A2-11 FS","SI20TPC9A6-20,SI20TPC9A2-11",79,,79,,18,,18,,49,2184,"HK1003 -Blackpoint D2 - Rev.0E DD30092021"
1-5128,SI20TPC9A6-20,"INSTALLATION OF CONNECTION MATERIAL IN CUSTOMER SITE TP-C9A",5121,"HK1003-Rev.0E-3",TT_Task,"55902",-,-,-,0,TK_NotStart,05/05/2022,,01/06/2022,,"SI20TPC9A2-10 FS,SI20TPC9A3-15 FS,SI20TPC9A2-11 FS,SI20TP-209& FS,SI20UBF615 SS","SI20TPC9A2-10,SI20TPC9A3-15,SI20TPC9A2-11,SI20TP-209&,SI20UBF615","SI20TPC9A6-25 FS,SI20TPC9A2-16 FS","SI20TPC9A6-25,SI20TPC9A2-16",91,,95,,21,,22,,63,2184,"HK1003 -Blackpoint D2 - Rev.0E DD30092021"
1-5129,SI20TPC9A2-11,"UPDATE OF TRANSITION PLAN TP-C9A",5121,"HK1003-Rev.0E-3",TT_Task,"55902",-,-,-,0,TK_NotStart,10/02/2022,,16/02/2022,,"SI20TPC9A2-10 FS","SI20TPC9A2-10","SI20TPC9A6-20 FS","SI20TPC9A6-20",79,,80,,18,,18,,49,2184,"HK1003 -Blackpoint D2 - Rev.0E DD30092021"
1-5130,SI20TPC9A2-16,"ALL RELEVANT PERMITS & LOTO AVAILABLE FROM CUSTOMER TP-C9A",5121,"HK1003-Rev.0E-3",TT_Mile,"55902",-,-,-,0,TK_NotStart,02/06/2022,,02/06/2022,,"SI20TPC9A6-20 FS","SI20TPC9A6-20","SI20TPC9A6-25 FS","SI20TPC9A6-25",95,,95,,22,,22,,68,2184,"HK1003 -Blackpoint D2 - Rev.0E DD30092021"
1-5131,SI20TPC9A8-26,"MEDIA  AVAILABLE TP-C9A",5121,"HK1003-Rev.0E-3",TT_Mile,"55902",-,-,-,0,TK_NotStart,07/02/2023,,07/02/2023,,"SI20TPC9A6-25 FS","SI20TPC9A6-25","SI20TPC9A8-30 FS","SI20TPC9A8-30",131,,131,,30,,30,,90,296,"HK1003 -Blackpoint D2 - Rev.0E DD30092021"
1-5132,SI20TPC10A8-30,"COMMISSIONING OF TP-C10A",5121,"HK1003-Rev.0E-3",TT_Task,"55902",-,-,-,0,TK_NotStart,07/02/2023,,13/02/2023,,"SI20TPC10A6-25 FS,SI20TPC10A8-26 FS","SI20TPC10A6-25,SI20TPC10A8-26","SI20UVM-8E27 FS,SI20GM-8B25 FS,SI20GM-8E25 FS,SI20GM-8B27 FS","SI20UVM-8E27,SI20GM-8B25,SI20GM-8E25,SI20GM-8B27",131,,132,,30,,30,,90,296,"HK1003 -Blackpoint D2 - Rev.0E DD30092021"
1-5133,SI20TPC10A3-15,"MATERIAL FOR TP INTEGRATION ON SITE TP-C10A",5121,"HK1003-Rev.0E-3",TT_Mile,"55902",-,-,-,0,TK_NotStart,05/05/2022,,05/05/2022,,"SI20TPC10A2-5 FS","SI20TPC10A2-5","SI20TPC10A6-25 FS,SI20TPC10A6-20 FS","SI20TPC10A6-25,SI20TPC10A6-20",91,,91,,21,,21,,63,2184,"HK1003 -Blackpoint D2 - Rev.0E DD30092021"
1-5134,SI20TPC10A6-25,"TERMINATION OF TP-C10A",5121,"HK1003-Rev.0E-3",TT_Task,"55902",-,-,-,0,TK_NotStart,02/06/2022,,15/06/2022,,"SI20TPC10A3-15 FS,SI20TPC10A6-20 FS,SI20TPC10A2-16 FS","SI20TPC10A3-15,SI20TPC10A6-20,SI20TPC10A2-16","SI20TPC10A8-30 FS,SI20TPC10A8-26 FS","SI20TPC10A8-30,SI20TPC10A8-26",95,,97,,22,,22,,68,2184,"HK1003 -Blackpoint D2 - Rev.0E DD30092021"
1-5135,SI20TPC10A2-5,"TECHNICAL CLARIFICATION WITH CUSTOMER / DESIGN FOR CONNECTION OF TP-C10A",5121,"HK1003-Rev.0E-3",TT_Task,"55902",-,-,-,100,TK_Complete,16/04/2021,16/04/2021,13/05/2021,13/05/2021,"SI-----1-05 FS","SI-----1-05","SI---1P2A530 FS,SI20TPC10A2-10 FS,SI20TPC10A3-15 FS,SI--5552-24 FS,SI---1P2A520 FS","SI---1P2A530,SI20TPC10A2-10,SI20TPC10A3-15,SI--5552-24,SI---1P2A520",36,36,40,40,8,8,9,9,9,,"HK1003 -Blackpoint D2 - Rev.0E DD30092021"
1-5136,SI20TPC10A2-10,"FINAL AGREEMENT WITH CUSTOMER / ACCESS TIME / REQUIREMENTS TO TP ALIGNED TP-C10A",5121,"HK1003-Rev.0E-3",TT_Mile,"55902",-,-,-,0,TK_NotStart,08/02/2022,,08/02/2022,,"SI20TPC10A2-5 FS","SI20TPC10A2-5","SI20TPC10A6-20 FS,SI20TPC10A2-11 FS","SI20TPC10A6-20,SI20TPC10A2-11",79,,79,,18,,18,,48,2184,"HK1003 -Blackpoint D2 - Rev.0E DD30092021"
1-5137,SI20TPC10A6-20,"INSTALLATION OF CONNECTION MATERIAL IN CUSTOMER SITE TP-C10A",5121,"HK1003-Rev.0E-3",TT_Task,"55902",-,-,-,0,TK_NotStart,05/05/2022,,01/06/2022,,"SI20TPC10A2-10 FS,SI20TPC10A3-15 FS,SI20TPC10A2-11 FS,SI20TP-210& FS,SI20UBF615 SS","SI20TPC10A2-10,SI20TPC10A3-15,SI20TPC10A2-11,SI20TP-210&,SI20UBF615","SI20TPC10A6-25 FS,SI20TPC10A2-16 FS","SI20TPC10A6-25,SI20TPC10A2-16",91,,95,,21,,22,,63,2184,"HK1003 -Blackpoint D2 - Rev.0E DD30092021"
1-5138,SI20TPC10A2-11,"UPDATE OF TRANSITION PLAN TP-C10A",5121,"HK1003-Rev.0E-3",TT_Task,"55902",-,-,-,0,TK_NotStart,08/02/2022,,16/02/2022,,"SI20TPC10A2-10 FS","SI20TPC10A2-10","SI20TPC10A6-20 FS","SI20TPC10A6-20",79,,80,,18,,18,,48,2184,"HK1003 -Blackpoint D2 - Rev.0E DD30092021"
1-5139,SI20TPC10A2-16,"ALL RELEVANT PERMITS & LOTO AVAILABLE FROM CUSTOMER TP-C10A",5121,"HK1003-Rev.0E-3",TT_Mile,"55902",-,-,-,0,TK_NotStart,02/06/2022,,02/06/2022,,"SI20TPC10A6-20 FS","SI20TPC10A6-20","SI20TPC10A6-25 FS","SI20TPC10A6-25",95,,95,,22,,22,,68,2184,"HK1003 -Blackpoint D2 - Rev.0E DD30092021"
1-5140,SI20TPC10A8-26,"MEDIA  AVAILABLE TP-C10A",5121,"HK1003-Rev.0E-3",TT_Mile,"55902",-,-,-,0,TK_NotStart,07/02/2023,,07/02/2023,,"SI20TPC10A6-25 FS","SI20TPC10A6-25","SI20TPC10A8-30 FS","SI20TPC10A8-30",131,,131,,30,,30,,90,296,"HK1003 -Blackpoint D2 - Rev.0E DD30092021"
1-5141,SI20TPI3A8-30,"COMMISSIONING OF TP-I3",5121,"HK1003-Rev.0E-3",TT_Task,"55902",-,-,-,0,TK_NotStart,14/02/2023,,20/02/2023,,"SI20TPI3A7-25 FS,SI20TPI3A8-26 FS","SI20TPI3A7-25,SI20TPI3A8-26","SI20CJ-8-25 FS","SI20CJ-8-25",132,,133,,30,,31,,90,16,"HK1003 -Blackpoint D2 - Rev.0E DD30092021"
1-5142,SI20TPI3A3-15,"MATERIAL FOR TP INTEGRATION ON SITE TP-I3",5121,"HK1003-Rev.0E-3",TT_Mile,"55902",-,-,-,0,TK_NotStart,04/05/2022,,04/05/2022,,"SI20TPI3A2-5 FS","SI20TPI3A2-5","SI20TPI3A7-25 FS,SI20TPI3A7-20 FS","SI20TPI3A7-25,SI20TPI3A7-20",91,,91,,21,,21,,62,1968,"HK1003 -Blackpoint D2 - Rev.0E DD30092021"
1-5143,SI20TPI3A7-25,"TERMINATION OF TP-I3",5121,"HK1003-Rev.0E-3",TT_Task,"55902",-,-,-,0,TK_NotStart,01/06/2022,,14/06/2022,,"SI20TPI3A3-15 FS,SI20TPI3A7-20 FS,SI20TPI3A2-16 FS","SI20TPI3A3-15,SI20TPI3A7-20,SI20TPI3A2-16","SI20TPI3A8-30 FS,SI20TPI3A8-26 FS","SI20TPI3A8-30,SI20TPI3A8-26",95,,97,,22,,22,,68,1968,"HK1003 -Blackpoint D2 - Rev.0E DD30092021"
1-5144,SI20TPI3A2-5,"TECHNICAL CLARIFICATION WITH CUSTOMER / DESIGN FOR CONNECTION OF TP-I3",5121,"HK1003-Rev.0E-3",TT_Task,"55902",-,-,-,100,TK_Complete,24/05/2021,24/05/2021,20/06/2021,20/06/2021,"SI-----1-05 FS","SI-----1-05","SI20TPI3A2-10 FS,SI20TPI3A3-15 FS","SI20TPI3A2-10,SI20TPI3A3-15",42,42,46,46,9,9,10,10,14,,"HK1003 -Blackpoint D2 - Rev.0E DD30092021"
1-5145,SI20TPI3A2-10,"FINAL AGREEMENT WITH CUSTOMER / ACCESS TIME / REQUIREMENTS TO TP ALIGNED TP-I3",5121,"HK1003-Rev.0E-3",TT_Mile,"55902",-,-,-,100,TK_Complete,21/06/2021,21/06/2021,21/06/2021,21/06/2021,"SI20TPI3A2-5 FS","SI20TPI3A2-5","SI20TPI3A7-20 FS,SI20TPI3A2-11 FS,SP20CJP2-70 FS","SI20TPI3A7-20,SI20TPI3A2-11,SP20CJP2-70",46,46,46,46,10,10,10,10,18,,"HK1003 -Blackpoint D2 - Rev.0E DD30092021"
1-5146,SI20TPI3A7-20,"INSTALLATION OF CONNECTION MATERIAL IN CUSTOMER SITE TP-I3",5121,"HK1003-Rev.0E-3",TT_Task,"55902",-,-,-,0,TK_NotStart,04/05/2022,,31/05/2022,,"SI20TPI3A2-10 FS,SI20TPI3A3-15 FS,SI20TPI3A2-11 FS,SI20UCA7-16 FS,SI20UCA7-16 SS","SI20TPI3A2-10,SI20TPI3A3-15,SI20TPI3A2-11,SI20UCA7-16,SI20UCA7-16","SI20TPI3A7-25 FS,SI20TPI3A2-16 FS","SI20TPI3A7-25,SI20TPI3A2-16",91,,95,,21,,22,,62,1968,"HK1003 -Blackpoint D2 - Rev.0E DD30092021"
1-5147,SI20TPI3A2-11,"UPDATE OF TRANSITION PLAN TP-I3",5121,"HK1003-Rev.0E-3",TT_Task,"55902",-,-,-,0,TK_NotStart,09/02/2022,,15/02/2022,,"SI20TPI3A2-10 FS","SI20TPI3A2-10","SI20TPI3A7-20 FS","SI20TPI3A7-20",79,,80,,18,,18,,49,1968,"HK1003 -Blackpoint D2 - Rev.0E DD30092021"
1-5148,SI20TPI3A2-16,"ALL RELEVANT PERMITS & LOTO AVAILABLE FROM CUSTOMER TP-I3",5121,"HK1003-Rev.0E-3",TT_Mile,"55902",-,-,-,0,TK_NotStart,01/06/2022,,01/06/2022,,"SI20TPI3A7-20 FS","SI20TPI3A7-20","SI20TPI3A7-25 FS","SI20TPI3A7-25",95,,95,,22,,22,,68,1968,"HK1003 -Blackpoint D2 - Rev.0E DD30092021"
1-5149,SI20TPI3A8-26,"MEDIA  AVAILABLE TP-I3",5121,"HK1003-Rev.0E-3",TT_Mile,"55902",-,-,-,0,TK_NotStart,14/02/2023,,14/02/2023,,"SI20TPI3A7-25 FS","SI20TPI3A7-25","SI20TPI3A8-30 FS","SI20TPI3A8-30",132,,132,,30,,30,,90,16,"HK1003 -Blackpoint D2 - Rev.0E DD30092021"
1-5150,SI20TPI18A8-30,"COMMISSIONING OF TP-I18",5121,"HK1003-Rev.0E-3",TT_Task,"55902",-,-,-,0,TK_NotStart,14/02/2023,,20/02/2023,,"SI20TPI18A7-25 FS,SI20TPI18A8-26 FS","SI20TPI18A7-25,SI20TPI18A8-26","SI20CJ-8-25 FS","SI20CJ-8-25",132,,133,,30,,31,,90,16,"HK1003 -Blackpoint D2 - Rev.0E DD30092021"
1-5151,SI20TPI18A3-15,"MATERIAL FOR TP INTEGRATION ON SITE TP-I18",5121,"HK1003-Rev.0E-3",TT_Mile,"55902",-,-,-,0,TK_NotStart,04/05/2022,,04/05/2022,,"SI20TPI18A2-5 FS","SI20TPI18A2-5","SI20TPI18A7-25 FS,SI20TPI18A7-20 FS","SI20TPI18A7-25,SI20TPI18A7-20",91,,91,,21,,21,,62,1968,"HK1003 -Blackpoint D2 - Rev.0E DD30092021"
1-5152,SI20TPI18A7-25,"TERMINATION OF TP-I18",5121,"HK1003-Rev.0E-3",TT_Task,"55902",-,-,-,0,TK_NotStart,01/06/2022,,14/06/2022,,"SI20TPI18A3-15 FS,SI20TPI18A7-20 FS,SI20TPI18A2-16 FS","SI20TPI18A3-15,SI20TPI18A7-20,SI20TPI18A2-16","SI20TPI18A8-30 FS,SI20TPI18A8-26 FS","SI20TPI18A8-30,SI20TPI18A8-26",95,,97,,22,,22,,68,1968,"HK1003 -Blackpoint D2 - Rev.0E DD30092021"
1-5153,SI20TPI18A2-5,"TECHNICAL CLARIFICATION WITH CUSTOMER / DESIGN FOR CONNECTION OF TP-I18",5121,"HK1003-Rev.0E-3",TT_Task,"55902",-,-,-,100,TK_Complete,24/05/2021,24/05/2021,20/06/2021,20/06/2021,"SI-----1-05 FS","SI-----1-05","SI20TPI18A2-10 FS,SI20TPI18A3-15 FS","SI20TPI18A2-10,SI20TPI18A3-15",42,42,46,46,9,9,10,10,14,,"HK1003 -Blackpoint D2 - Rev.0E DD30092021"
1-5154,SI20TPI18A2-10,"FINAL AGREEMENT WITH CUSTOMER / ACCESS TIME / REQUIREMENTS TO TP ALIGNED TP-I18",5121,"HK1003-Rev.0E-3",TT_Mile,"55902",-,-,-,100,TK_Complete,21/06/2021,21/06/2021,21/06/2021,21/06/2021,"SI20TPI18A2-5 FS","SI20TPI18A2-5","SI20TPI18A7-20 FS,SI20TPI18A2-11 FS,SP20CJP2-70 FS","SI20TPI18A7-20,SI20TPI18A2-11,SP20CJP2-70",46,46,46,46,10,10,10,10,18,,"HK1003 -Blackpoint D2 - Rev.0E DD30092021"
1-5155,SI20TPI18A7-20,"INSTALLATION OF CONNECTION MATERIAL IN CUSTOMER SITE TP-I18",5121,"HK1003-Rev.0E-3",TT_Task,"55902",-,-,-,0,TK_NotStart,04/05/2022,,31/05/2022,,"SI20TPI18A2-10 FS,SI20TPI18A3-15 FS,SI20TPI18A2-11 FS,SI20UCA7-16 FS,SI20TP-247& FS","SI20TPI18A2-10,SI20TPI18A3-15,SI20TPI18A2-11,SI20UCA7-16,SI20TP-247&","SI20TPI18A7-25 FS,SI20TPI18A2-16 FS","SI20TPI18A7-25,SI20TPI18A2-16",91,,95,,21,,22,,62,1968,"HK1003 -Blackpoint D2 - Rev.0E DD30092021"
1-5156,SI20TPI18A2-11,"UPDATE OF TRANSITION PLAN TP-I18",5121,"HK1003-Rev.0E-3",TT_Task,"55902",-,-,-,0,TK_NotStart,09/02/2022,,15/02/2022,,"SI20TPI18A2-10 FS","SI20TPI18A2-10","SI20TPI18A7-20 FS","SI20TPI18A7-20",79,,80,,18,,18,,49,1968,"HK1003 -Blackpoint D2 - Rev.0E DD30092021"
1-5157,SI20TPI18A2-16,"ALL RELEVANT PERMITS & LOTO AVAILABLE FROM CUSTOMER TP-I18",5121,"HK1003-Rev.0E-3",TT_Mile,"55902",-,-,-,0,TK_NotStart,01/06/2022,,01/06/2022,,"SI20TPI18A7-20 FS","SI20TPI18A7-20","SI20TPI18A7-25 FS","SI20TPI18A7-25",95,,95,,22,,22,,68,1968,"HK1003 -Blackpoint D2 - Rev.0E DD30092021"
1-5158,SI20TPI18A8-26,"MEDIA  AVAILABLE TP-I18",5121,"HK1003-Rev.0E-3",TT_Mile,"55902",-,-,-,0,TK_NotStart,14/02/2023,,14/02/2023,,"SI20TPI18A7-25 FS","SI20TPI18A7-25","SI20TPI18A8-30 FS","SI20TPI18A8-30",132,,132,,30,,30,,90,16,"HK1003 -Blackpoint D2 - Rev.0E DD30092021"
1-5159,SI20TPI2I8-30,"COMMISSIONING OF TP-I2i",5121,"HK1003-Rev.0E-3",TT_Task,"55902",-,-,-,0,TK_NotStart,14/02/2023,,20/02/2023,,"SI20TPI2I7-25 FS,SI20TPI2I8-26 FS","SI20TPI2I7-25,SI20TPI2I8-26","SI20CJ-8-25 FS","SI20CJ-8-25",132,,133,,30,,31,,90,16,"HK1003 -Blackpoint D2 - Rev.0E DD30092021"
1-5160,SI20TPI2I3-15,"MATERIAL FOR TP INTEGRATION ON SITE TP-I2i",5121,"HK1003-Rev.0E-3",TT_Mile,"55902",-,-,-,0,TK_NotStart,04/05/2022,,04/05/2022,,"SI20TPI2I2-5 FS","SI20TPI2I2-5","SI20TPI2I7-25 FS,SI20TPI2I7-20 FS","SI20TPI2I7-25,SI20TPI2I7-20",91,,91,,21,,21,,62,1968,"HK1003 -Blackpoint D2 - Rev.0E DD30092021"
1-5161,SI20TPI2I7-25,"TERMINATION OF TP-I2i",5121,"HK1003-Rev.0E-3",TT_Task,"55902",-,-,-,0,TK_NotStart,01/06/2022,,14/06/2022,,"SI20TPI2I3-15 FS,SI20TPI2I7-20 FS,SI20TPI2I2-16 FS","SI20TPI2I3-15,SI20TPI2I7-20,SI20TPI2I2-16","SI20TPI2I8-30 FS,SI20TPI2I8-26 FS","SI20TPI2I8-30,SI20TPI2I8-26",95,,97,,22,,22,,68,1968,"HK1003 -Blackpoint D2 - Rev.0E DD30092021"
1-5162,SI20TPI2I2-5,"TECHNICAL CLARIFICATION WITH CUSTOMER / DESIGN FOR CONNECTION OF TP-I2i",5121,"HK1003-Rev.0E-3",TT_Task,"55902",-,-,-,100,TK_Complete,24/05/2021,24/05/2021,20/06/2021,20/06/2021,"SI-----1-05 FS","SI-----1-05","SI20TPI2I2-10 FS,SI20TPI2I3-15 FS","SI20TPI2I2-10,SI20TPI2I3-15",42,42,46,46,9,9,10,10,14,,"HK1003 -Blackpoint D2 - Rev.0E DD30092021"
1-5163,SI20TPI2I2-10,"FINAL AGREEMENT WITH CUSTOMER / ACCESS TIME / REQUIREMENTS TO TP ALIGNED TP-I2i",5121,"HK1003-Rev.0E-3",TT_Mile,"55902",-,-,-,100,TK_Complete,21/06/2021,21/06/2021,21/06/2021,21/06/2021,"SI20TPI2I2-5 FS","SI20TPI2I2-5","SI20TPI2I7-20 FS,SI20TPI2I2-11 FS,SP20CJP2-70 FS","SI20TPI2I7-20,SI20TPI2I2-11,SP20CJP2-70",46,46,46,46,10,10,10,10,18,,"HK1003 -Blackpoint D2 - Rev.0E DD30092021"
1-5164,SI20TPI2I7-20,"INSTALLATION OF CONNECTION MATERIAL IN CUSTOMER SITE TP-I2i",5121,"HK1003-Rev.0E-3",TT_Task,"55902",-,-,-,0,TK_NotStart,04/05/2022,,31/05/2022,,"SI20TPI2I2-10 FS,SI20TPI2I3-15 FS,SI20TPI2I2-11 FS,SI20UCA7-16 FS,SI20TP-248& FS","SI20TPI2I2-10,SI20TPI2I3-15,SI20TPI2I2-11,SI20UCA7-16,SI20TP-248&","SI20TPI2I7-25 FS,SI20TPI2I2-16 FS","SI20TPI2I7-25,SI20TPI2I2-16",91,,95,,21,,22,,62,1968,"HK1003 -Blackpoint D2 - Rev.0E DD30092021"
1-5165,SI20TPI2I2-11,"UPDATE OF TRANSITION PLAN TP-I2i",5121,"HK1003-Rev.0E-3",TT_Task,"55902",-,-,-,0,TK_NotStart,09/02/2022,,15/02/2022,,"SI20TPI2I2-10 FS","SI20TPI2I2-10","SI20TPI2I7-20 FS","SI20TPI2I7-20",79,,80,,18,,18,,49,1968,"HK1003 -Blackpoint D2 - Rev.0E DD30092021"
1-5166,SI20TPI2I2-16,"ALL RELEVANT PERMITS & LOTO AVAILABLE FROM CUSTOMER TP-I2i",5121,"HK1003-Rev.0E-3",TT_Mile,"55902",-,-,-,0,TK_NotStart,01/06/2022,,01/06/2022,,"SI20TPI2I7-20 FS","SI20TPI2I7-20","SI20TPI2I7-25 FS","SI20TPI2I7-25",95,,95,,22,,22,,68,1968,"HK1003 -Blackpoint D2 - Rev.0E DD30092021"
1-5167,SI20TPI2I8-26,"MEDIA  AVAILABLE TP-I2i",5121,"HK1003-Rev.0E-3",TT_Mile,"55902",-,-,-,0,TK_NotStart,14/02/2023,,14/02/2023,,"SI20TPI2I7-25 FS","SI20TPI2I7-25","SI20TPI2I8-30 FS","SI20TPI2I8-30",132,,132,,30,,30,,90,16,"HK1003 -Blackpoint D2 - Rev.0E DD30092021"
1-5168,SI20TPI2II8-30,"COMMISSIONING OF TP-I2ii",5121,"HK1003-Rev.0E-3",TT_Task,"55902",-,-,-,0,TK_NotStart,14/02/2023,,20/02/2023,,"SI20TPI2II7-25 FS,SI20TPI2II8-26 FS","SI20TPI2II7-25,SI20TPI2II8-26","SI20CJ-8-25 FS","SI20CJ-8-25",132,,133,,30,,31,,90,16,"HK1003 -Blackpoint D2 - Rev.0E DD30092021"
1-5169,SI20TPI2II3-15,"MATERIAL FOR TP INTEGRATION ON SITE TP-I2ii",5121,"HK1003-Rev.0E-3",TT_Mile,"55902",-,-,-,0,TK_NotStart,04/05/2022,,04/05/2022,,"SI20TPI2II2-5 FS","SI20TPI2II2-5","SI20TPI2II7-25 FS,SI20TPI2II7-20 FS","SI20TPI2II7-25,SI20TPI2II7-20",91,,91,,21,,21,,62,1968,"HK1003 -Blackpoint D2 - Rev.0E DD30092021"
1-5170,SI20TPI2II7-25,"TERMINATION OF TP-I2ii",5121,"HK1003-Rev.0E-3",TT_Task,"55902",-,-,-,0,TK_NotStart,01/06/2022,,14/06/2022,,"SI20TPI2II3-15 FS,SI20TPI2II7-20 FS,SI20TPI2II2-16 FS","SI20TPI2II3-15,SI20TPI2II7-20,SI20TPI2II2-16","SI20TPI2II8-30 FS,SI20TPI2II8-26 FS","SI20TPI2II8-30,SI20TPI2II8-26",95,,97,,22,,22,,68,1968,"HK1003 -Blackpoint D2 - Rev.0E DD30092021"
1-5171,SI20TPI2II2-5,"TECHNICAL CLARIFICATION WITH CUSTOMER / DESIGN FOR CONNECTION OF TP-I2ii",5121,"HK1003-Rev.0E-3",TT_Task,"55902",-,-,-,100,TK_Complete,24/05/2021,24/05/2021,20/06/2021,20/06/2021,"SI-----1-05 FS","SI-----1-05","SI20TPI2II2-10 FS,SI20TPI2II3-15 FS","SI20TPI2II2-10,SI20TPI2II3-15",42,42,46,46,9,9,10,10,14,,"HK1003 -Blackpoint D2 - Rev.0E DD30092021"
1-5172,SI20TPI2II2-10,"FINAL AGREEMENT WITH CUSTOMER / ACCESS TIME / REQUIREMENTS TO TP ALIGNED TP-I2ii",5121,"HK1003-Rev.0E-3",TT_Mile,"55902",-,-,-,100,TK_Complete,21/06/2021,21/06/2021,21/06/2021,21/06/2021,"SI20TPI2II2-5 FS","SI20TPI2II2-5","SI20TPI2II7-20 FS,SI20TPI2II2-11 FS,SP20CJP2-70 FS","SI20TPI2II7-20,SI20TPI2II2-11,SP20CJP2-70",46,46,46,46,10,10,10,10,18,,"HK1003 -Blackpoint D2 - Rev.0E DD30092021"
1-5173,SI20TPI2II7-20,"INSTALLATION OF CONNECTION MATERIAL IN CUSTOMER SITE TP-I2ii",5121,"HK1003-Rev.0E-3",TT_Task,"55902",-,-,-,0,TK_NotStart,04/05/2022,,31/05/2022,,"SI20TPI2II2-10 FS,SI20TPI2II3-15 FS,SI20TPI2II2-11 FS,SI20UCA7-16 FS,SI20TP-249& FS","SI20TPI2II2-10,SI20TPI2II3-15,SI20TPI2II2-11,SI20UCA7-16,SI20TP-249&","SI20TPI2II7-25 FS,SI20TPI2II2-16 FS","SI20TPI2II7-25,SI20TPI2II2-16",91,,95,,21,,22,,62,1968,"HK1003 -Blackpoint D2 - Rev.0E DD30092021"
1-5174,SI20TPI2II2-11,"UPDATE OF TRANSITION PLAN TP-I2ii",5121,"HK1003-Rev.0E-3",TT_Task,"55902",-,-,-,0,TK_NotStart,09/02/2022,,15/02/2022,,"SI20TPI2II2-10 FS","SI20TPI2II2-10","SI20TPI2II7-20 FS","SI20TPI2II7-20",79,,80,,18,,18,,49,1968,"HK1003 -Blackpoint D2 - Rev.0E DD30092021"
1-5175,SI20TPI2II2-16,"ALL RELEVANT PERMITS & LOTO AVAILABLE FROM CUSTOMER TP-I2ii",5121,"HK1003-Rev.0E-3",TT_Mile,"55902",-,-,-,0,TK_NotStart,01/06/2022,,01/06/2022,,"SI20TPI2II7-20 FS","SI20TPI2II7-20","SI20TPI2II7-25 FS","SI20TPI2II7-25",95,,95,,22,,22,,68,1968,"HK1003 -Blackpoint D2 - Rev.0E DD30092021"
1-5176,SI20TPI2II8-26,"MEDIA  AVAILABLE TP-I2ii",5121,"HK1003-Rev.0E-3",TT_Mile,"55902",-,-,-,0,TK_NotStart,14/02/2023,,14/02/2023,,"SI20TPI2II7-25 FS","SI20TPI2II7-25","SI20TPI2II8-30 FS","SI20TPI2II8-30",132,,132,,30,,30,,90,16,"HK1003 -Blackpoint D2 - Rev.0E DD30092021"
1-5177,SI20TPI2III8-30,"COMMISSIONING OF TP-I2iii",5121,"HK1003-Rev.0E-3",TT_Task,"55902",-,-,-,0,TK_NotStart,14/02/2023,,20/02/2023,,"SI20TPI2III7-25 FS,SI20TPI2III8-26 FS","SI20TPI2III7-25,SI20TPI2III8-26","SI20CJ-8-25 FS","SI20CJ-8-25",132,,133,,30,,31,,90,16,"HK1003 -Blackpoint D2 - Rev.0E DD30092021"
1-5178,SI20TPI2III3-15,"MATERIAL FOR TP INTEGRATION ON SITE TP-I2iii",5121,"HK1003-Rev.0E-3",TT_Mile,"55902",-,-,-,0,TK_NotStart,04/05/2022,,04/05/2022,,"SI20TPI2III2-5 FS","SI20TPI2III2-5","SI20TPI2III7-25 FS,SI20TPI2III7-20 FS","SI20TPI2III7-25,SI20TPI2III7-20",91,,91,,21,,21,,62,1968,"HK1003 -Blackpoint D2 - Rev.0E DD30092021"
1-5179,SI20TPI2III7-25,"TERMINATION OF TP-I2iii",5121,"HK1003-Rev.0E-3",TT_Task,"55902",-,-,-,0,TK_NotStart,01/06/2022,,14/06/2022,,"SI20TPI2III3-15 FS,SI20TPI2III7-20 FS,SI20TPI2III2-16 FS","SI20TPI2III3-15,SI20TPI2III7-20,SI20TPI2III2-16","SI20TPI2III8-30 FS,SI20TPI2III8-26 FS","SI20TPI2III8-30,SI20TPI2III8-26",95,,97,,22,,22,,68,1968,"HK1003 -Blackpoint D2 - Rev.0E DD30092021"
1-5180,SI20TPI2III2-5,"TECHNICAL CLARIFICATION WITH CUSTOMER / DESIGN FOR CONNECTION OF TP-I2iii",5121,"HK1003-Rev.0E-3",TT_Task,"55902",-,-,-,100,TK_Complete,24/05/2021,24/05/2021,20/06/2021,20/06/2021,"SI-----1-05 FS","SI-----1-05","SI20TPI2III2-10 FS,SI20TPI2III3-15 FS","SI20TPI2III2-10,SI20TPI2III3-15",42,42,46,46,9,9,10,10,14,,"HK1003 -Blackpoint D2 - Rev.0E DD30092021"
1-5181,SI20TPI2III2-10,"FINAL AGREEMENT WITH CUSTOMER / ACCESS TIME / REQUIREMENTS TO TP ALIGNED TP-I2iii",5121,"HK1003-Rev.0E-3",TT_Mile,"55902",-,-,-,100,TK_Complete,21/06/2021,21/06/2021,21/06/2021,21/06/2021,"SI20TPI2III2-5 FS","SI20TPI2III2-5","SI20TPI2III7-20 FS,SI20TPI2III2-11 FS,SP20CJP2-70 FS","SI20TPI2III7-20,SI20TPI2III2-11,SP20CJP2-70",46,46,46,46,10,10,10,10,18,,"HK1003 -Blackpoint D2 - Rev.0E DD30092021"
1-5182,SI20TPI2III7-20,"INSTALLATION OF CONNECTION MATERIAL IN CUSTOMER SITE TP-I2iii",5121,"HK1003-Rev.0E-3",TT_Task,"55902",-,-,-,0,TK_NotStart,04/05/2022,,31/05/2022,,"SI20TPI2III2-10 FS,SI20TPI2III3-15 FS,SI20TPI2III2-11 FS,SI20UCA7-16 FS,SI20TP-250& FS","SI20TPI2III2-10,SI20TPI2III3-15,SI20TPI2III2-11,SI20UCA7-16,SI20TP-250&","SI20TPI2III7-25 FS,SI20TPI2III2-16 FS","SI20TPI2III7-25,SI20TPI2III2-16",91,,95,,21,,22,,62,1968,"HK1003 -Blackpoint D2 - Rev.0E DD30092021"
1-5183,SI20TPI2III2-11,"UPDATE OF TRANSITION PLAN TP-I2iii",5121,"HK1003-Rev.0E-3",TT_Task,"55902",-,-,-,0,TK_NotStart,09/02/2022,,15/02/2022,,"SI20TPI2III2-10 FS","SI20TPI2III2-10","SI20TPI2III7-20 FS","SI20TPI2III7-20",79,,80,,18,,18,,49,1968,"HK1003 -Blackpoint D2 - Rev.0E DD30092021"
1-5184,SI20TPI2III2-16,"ALL RELEVANT PERMITS & LOTO AVAILABLE FROM CUSTOMER TP-I2iii",5121,"HK1003-Rev.0E-3",TT_Mile,"55902",-,-,-,0,TK_NotStart,01/06/2022,,01/06/2022,,"SI20TPI2III7-20 FS","SI20TPI2III7-20","SI20TPI2III7-25 FS","SI20TPI2III7-25",95,,95,,22,,22,,68,1968,"HK1003 -Blackpoint D2 - Rev.0E DD30092021"
1-5185,SI20TPI2III8-26,"MEDIA  AVAILABLE TP-I2iii",5121,"HK1003-Rev.0E-3",TT_Mile,"55902",-,-,-,0,TK_NotStart,14/02/2023,,14/02/2023,,"SI20TPI2III7-25 FS","SI20TPI2III7-25","SI20TPI2III8-30 FS","SI20TPI2III8-30",132,,132,,30,,30,,91,16,"HK1003 -Blackpoint D2 - Rev.0E DD30092021"
1-5186,SI20TPI2IV8-30,"COMMISSIONING OF TP-I2iv",5121,"HK1003-Rev.0E-3",TT_Task,"55902",-,-,-,0,TK_NotStart,14/02/2023,,20/02/2023,,"SI20TPI2IV7-25 FS,SI20TPI2IV8-26 FS","SI20TPI2IV7-25,SI20TPI2IV8-26","SI20CJ-8-25 FS","SI20CJ-8-25",132,,133,,30,,31,,91,16,"HK1003 -Blackpoint D2 - Rev.0E DD30092021"
1-5187,SI20TPI2IV3-15,"MATERIAL FOR TP INTEGRATION ON SITE TP-I2iv",5121,"HK1003-Rev.0E-3",TT_Mile,"55902",-,-,-,0,TK_NotStart,04/05/2022,,04/05/2022,,"SI20TPI2IV2-5 FS","SI20TPI2IV2-5","SI20TPI2IV7-25 FS,SI20TPI2IV7-20 FS","SI20TPI2IV7-25,SI20TPI2IV7-20",91,,91,,21,,21,,62,1968,"HK1003 -Blackpoint D2 - Rev.0E DD30092021"
1-5188,SI20TPI2IV7-25,"TERMINATION OF TP-I2iv",5121,"HK1003-Rev.0E-3",TT_Task,"55902",-,-,-,0,TK_NotStart,01/06/2022,,14/06/2022,,"SI20TPI2IV3-15 FS,SI20TPI2IV7-20 FS,SI20TPI2IV2-16 FS","SI20TPI2IV3-15,SI20TPI2IV7-20,SI20TPI2IV2-16","SI20TPI2IV8-30 FS,SI20TPI2IV8-26 FS","SI20TPI2IV8-30,SI20TPI2IV8-26",95,,97,,22,,22,,68,1968,"HK1003 -Blackpoint D2 - Rev.0E DD30092021"
1-5189,SI20TPI2IV2-5,"TECHNICAL CLARIFICATION WITH CUSTOMER / DESIGN FOR CONNECTION OF TP-I2iv",5121,"HK1003-Rev.0E-3",TT_Task,"55902",-,-,-,100,TK_Complete,24/05/2021,24/05/2021,20/06/2021,20/06/2021,"SI-----1-05 FS","SI-----1-05","SI20TPI2IV2-10 FS,SI20TPI2IV3-15 FS","SI20TPI2IV2-10,SI20TPI2IV3-15",42,42,46,46,9,9,10,10,14,,"HK1003 -Blackpoint D2 - Rev.0E DD30092021"
1-5190,SI20TPI2IV2-10,"FINAL AGREEMENT WITH CUSTOMER / ACCESS TIME / REQUIREMENTS TO TP ALIGNED TP-I2iv",5121,"HK1003-Rev.0E-3",TT_Mile,"55902",-,-,-,100,TK_Complete,21/06/2021,21/06/2021,21/06/2021,21/06/2021,"SI20TPI2IV2-5 FS","SI20TPI2IV2-5","SI20TPI2IV7-20 FS,SI20TPI2IV2-11 FS,SP20CJP2-70 FS","SI20TPI2IV7-20,SI20TPI2IV2-11,SP20CJP2-70",46,46,46,46,10,10,10,10,18,,"HK1003 -Blackpoint D2 - Rev.0E DD30092021"
1-5191,SI20TPI2IV7-20,"INSTALLATION OF CONNECTION MATERIAL IN CUSTOMER SITE TP-I2iv",5121,"HK1003-Rev.0E-3",TT_Task,"55902",-,-,-,0,TK_NotStart,04/05/2022,,31/05/2022,,"SI20TPI2IV2-10 FS,SI20TPI2IV3-15 FS,SI20TPI2IV2-11 FS,SI20UCA7-16 FS,SI20TP-251& FS","SI20TPI2IV2-10,SI20TPI2IV3-15,SI20TPI2IV2-11,SI20UCA7-16,SI20TP-251&","SI20TPI2IV7-25 FS,SI20TPI2IV2-16 FS","SI20TPI2IV7-25,SI20TPI2IV2-16",91,,95,,21,,22,,62,1968,"HK1003 -Blackpoint D2 - Rev.0E DD30092021"
1-5192,SI20TPI2IV2-11,"UPDATE OF TRANSITION PLAN TP-I2iv",5121,"HK1003-Rev.0E-3",TT_Task,"55902",-,-,-,0,TK_NotStart,09/02/2022,,15/02/2022,,"SI20TPI2IV2-10 FS","SI20TPI2IV2-10","SI20TPI2IV7-20 FS","SI20TPI2IV7-20",79,,80,,18,,18,,49,1968,"HK1003 -Blackpoint D2 - Rev.0E DD30092021"
1-5193,SI20TPI2IV2-16,"ALL RELEVANT PERMITS & LOTO AVAILABLE FROM CUSTOMER TP-I2iv",5121,"HK1003-Rev.0E-3",TT_Mile,"55902",-,-,-,0,TK_NotStart,01/06/2022,,01/06/2022,,"SI20TPI2IV7-20 FS","SI20TPI2IV7-20","SI20TPI2IV7-25 FS","SI20TPI2IV7-25",95,,95,,22,,22,,68,1968,"HK1003 -Blackpoint D2 - Rev.0E DD30092021"
1-5194,SI20TPI2IV8-26,"MEDIA  AVAILABLE TP-I2iv",5121,"HK1003-Rev.0E-3",TT_Mile,"55902",-,-,-,0,TK_NotStart,14/02/2023,,14/02/2023,,"SI20TPI2IV7-25 FS","SI20TPI2IV7-25","SI20TPI2IV8-30 FS","SI20TPI2IV8-30",132,,132,,30,,30,,91,16,"HK1003 -Blackpoint D2 - Rev.0E DD30092021"
1-5195,SI20TPE4A8-30,"COMMISSIONING OF TP-E4",5121,"HK1003-Rev.0E-3",TT_Task,"55902",-,-,-,0,TK_NotStart,28/02/2023,,06/03/2023,,"SI20TPE4A7-25 FS,SI20TPE4A8-26 FS","SI20TPE4A7-25,SI20TPE4A8-26","SI20ACA9-85 SS","SI20ACA9-85",134,,135,,31,,31,,92,240,"HK1003 -Blackpoint D2 - Rev.0E DD30092021"
1-5196,SI20TPE4A3-15,"MATERIAL FOR TP INTEGRATION ON SITE TP-E4",5121,"HK1003-Rev.0E-3",TT_Mile,"55902",-,-,-,0,TK_NotStart,05/12/2022,,05/12/2022,,"SI20TPE4A2-5 FS","SI20TPE4A2-5","SI20TPE4A7-25 FS,SI20TPE4A7-20 FS","SI20TPE4A7-25,SI20TPE4A7-20",122,,122,,28,,28,,86,584,"HK1003 -Blackpoint D2 - Rev.0E DD30092021"
1-5197,SI20TPE4A7-25,"TERMINATION OF TP-E4 (by client)",5121,"HK1003-Rev.0E-3",TT_Task,"55902",-,-,-,0,TK_NotStart,10/02/2023,,23/02/2023,,"SI20TPE4A3-15 FS,SI20TPE4A7-20 FS,SI20TPE4A2-16 FS,CL20ACA7-82 FS,SI20ACA7-84 SS","SI20TPE4A3-15,SI20TPE4A7-20,SI20TPE4A2-16,CL20ACA7-82,SI20ACA7-84","SI20TPE4A8-30 FS,SI20TPE4A8-26 FS","SI20TPE4A8-30,SI20TPE4A8-26",131,,133,,30,,31,,90,272,"HK1003 -Blackpoint D2 - Rev.0E DD30092021"
1-5198,SI20TPE4A2-5,"TECHNICAL CLARIFICATION WITH CUSTOMER / DESIGN FOR CONNECTION OF TP-E4",5121,"HK1003-Rev.0E-3",TT_Task,"55902",-,-,-,100,TK_Complete,30/04/2021,30/04/2021,27/05/2021,27/05/2021,"SI-----1-05 FS","SI-----1-05","SI20TPE4A2-10 FS,SI20TPE4A3-15 FS","SI20TPE4A2-10,SI20TPE4A3-15",38,38,42,42,9,9,9,9,10,,"HK1003 -Blackpoint D2 - Rev.0E DD30092021"
1-5199,SI20TPE4A2-10,"FINAL AGREEMENT WITH CUSTOMER / ACCESS TIME / REQUIREMENTS TO TP ALIGNED TP-E4",5121,"HK1003-Rev.0E-3",TT_Mile,"55902",-,-,-,100,TK_Complete,28/05/2021,28/05/2021,28/05/2021,28/05/2021,"SI20TPE4A2-5 FS","SI20TPE4A2-5","SI20TPE4A7-20 FS,SI20TPE4A2-11 FS,SI--C--2C50 FS","SI20TPE4A7-20,SI20TPE4A2-11,SI--C--2C50",42,42,42,42,10,10,10,10,14,,"HK1003 -Blackpoint D2 - Rev.0E DD30092021"
1-5200,SI20TPE4A7-20,"INSTALLATION OF CONNECTION MATERIAL IN D2 SITE TP-E4 (by client)",5121,"HK1003-Rev.0E-3",TT_Task,"55902",-,-,-,0,TK_NotStart,05/12/2022,,01/01/2023,,"SI20TPE4A2-10 FS,SI20TPE4A3-15 FS,SI20TPE4A2-11 FS,CL20ACA7-80 SS,SI20TP-260& FS","SI20TPE4A2-10,SI20TPE4A3-15,SI20TPE4A2-11,CL20ACA7-80,SI20TP-260&","SI20TPE4A7-25 FS,SI20TPE4A2-16 FS","SI20TPE4A7-25,SI20TPE4A2-16",122,,126,,28,,29,,86,584,"HK1003 -Blackpoint D2 - Rev.0E DD30092021"
1-5201,SI20TPE4A2-11,"UPDATE OF TRANSITION PLAN TP-E4",5121,"HK1003-Rev.0E-3",TT_Task,"55902",-,-,-,0,TK_NotStart,12/09/2022,,18/09/2022,,"SI20TPE4A2-10 FS","SI20TPE4A2-10","SI20TPE4A7-20 FS","SI20TPE4A7-20",110,,111,,25,,25,,81,584,"HK1003 -Blackpoint D2 - Rev.0E DD30092021"
1-5202,SI20TPE4A2-16,"ALL RELEVANT PERMITS & LOTO AVAILABLE FROM CUSTOMER TP-E4",5121,"HK1003-Rev.0E-3",TT_Mile,"55902",-,-,-,0,TK_NotStart,10/02/2023,,10/02/2023,,"SI20TPE4A7-20 FS","SI20TPE4A7-20","SI20TPE4A7-25 FS","SI20TPE4A7-25",131,,131,,30,,30,,90,272,"HK1003 -Blackpoint D2 - Rev.0E DD30092021"
1-5203,SI20TPE4A8-26,"MEDIA  AVAILABLE TP-E4",5121,"HK1003-Rev.0E-3",TT_Mile,"55902",-,-,-,0,TK_NotStart,28/02/2023,,28/02/2023,,"SI20TPE4A7-25 FS","SI20TPE4A7-25","SI20TPE4A8-30 FS","SI20TPE4A8-30",134,,134,,31,,31,,92,240,"HK1003 -Blackpoint D2 - Rev.0E DD30092021"
1-5204,SI20TPE5A8-30,"COMMISSIONING OF TP-E5",5121,"HK1003-Rev.0E-3",TT_Task,"55902",-,-,-,0,TK_NotStart,21/02/2023,,27/02/2023,,"SI20TPE5A7-25 FS,SI20TPE5A8-26 FS","SI20TPE5A7-25,SI20TPE5A8-26","SI20ACA9-85 FS","SI20ACA9-85",133,,134,,31,,31,,91,240,"HK1003 -Blackpoint D2 - Rev.0E DD30092021"
1-5205,SI20TPE5A3-15,"MATERIAL FOR TP INTEGRATION ON SITE TP-E5",5121,"HK1003-Rev.0E-3",TT_Mile,"55902",-,-,-,0,TK_NotStart,05/12/2022,,05/12/2022,,"SI20TPE5A2-5 FS","SI20TPE5A2-5","SI20TPE5A7-25 FS,SI20TPE5A7-20 FS","SI20TPE5A7-25,SI20TPE5A7-20",122,,122,,28,,28,,86,528,"HK1003 -Blackpoint D2 - Rev.0E DD30092021"
1-5206,SI20TPE5A7-25,"TERMINATION OF TP-E5",5121,"HK1003-Rev.0E-3",TT_Task,"55902",-,-,-,0,TK_NotStart,02/01/2023,,15/01/2023,,"SI20TPE5A3-15 FS,SI20TPE5A7-20 FS,SI20TPE5A2-16 FS","SI20TPE5A3-15,SI20TPE5A7-20,SI20TPE5A2-16","SI20TPE5A8-30 FS,SI20TPE5A8-26 FS","SI20TPE5A8-30,SI20TPE5A8-26",126,,128,,29,,29,,88,528,"HK1003 -Blackpoint D2 - Rev.0E DD30092021"
1-5207,SI20TPE5A2-5,"TECHNICAL CLARIFICATION WITH CUSTOMER / DESIGN FOR CONNECTION OF TP-E5",5121,"HK1003-Rev.0E-3",TT_Task,"55902",-,-,-,100,TK_Complete,30/04/2021,30/04/2021,27/05/2021,27/05/2021,"SI-----1-05 FS","SI-----1-05","SI20TPE5A2-10 FS,SI20TPE5A3-15 FS","SI20TPE5A2-10,SI20TPE5A3-15",38,38,42,42,9,9,9,9,10,,"HK1003 -Blackpoint D2 - Rev.0E DD30092021"
1-5208,SI20TPE5A2-10,"FINAL AGREEMENT WITH CUSTOMER / ACCESS TIME / REQUIREMENTS TO TP ALIGNED TP-E5",5121,"HK1003-Rev.0E-3",TT_Mile,"55902",-,-,-,100,TK_Complete,28/05/2021,28/05/2021,28/05/2021,28/05/2021,"SI20TPE5A2-5 FS","SI20TPE5A2-5","SI20TPE5A7-20 FS,SI20TPE5A2-11 FS,SI--C--2C50 FS","SI20TPE5A7-20,SI20TPE5A2-11,SI--C--2C50",42,42,42,42,10,10,10,10,14,,"HK1003 -Blackpoint D2 - Rev.0E DD30092021"
1-5209,SI20TPE5A7-20,"INSTALLATION OF CONNECTION MATERIAL IN D2 SITE TP-E5",5121,"HK1003-Rev.0E-3",TT_Task,"55902",-,-,-,0,TK_NotStart,05/12/2022,,01/01/2023,,"SI20TPE5A2-10 FS,SI20TPE5A3-15 FS,SI20TPE5A2-11 FS,CL20ACA7-80 SS,SI20TP-261& FS","SI20TPE5A2-10,SI20TPE5A3-15,SI20TPE5A2-11,CL20ACA7-80,SI20TP-261&","SI20TPE5A7-25 FS,SI20TPE5A2-16 FS","SI20TPE5A7-25,SI20TPE5A2-16",122,,126,,28,,29,,86,528,"HK1003 -Blackpoint D2 - Rev.0E DD30092021"
1-5210,SI20TPE5A2-11,"UPDATE OF TRANSITION PLAN TP-E5",5121,"HK1003-Rev.0E-3",TT_Task,"55902",-,-,-,0,TK_NotStart,12/09/2022,,18/09/2022,,"SI20TPE5A2-10 FS","SI20TPE5A2-10","SI20TPE5A7-20 FS","SI20TPE5A7-20",110,,111,,25,,25,,81,528,"HK1003 -Blackpoint D2 - Rev.0E DD30092021"
1-5211,SI20TPE5A2-16,"ALL RELEVANT PERMITS & LOTO AVAILABLE FROM CUSTOMER TP-E5",5121,"HK1003-Rev.0E-3",TT_Mile,"55902",-,-,-,0,TK_NotStart,02/01/2023,,02/01/2023,,"SI20TPE5A7-20 FS","SI20TPE5A7-20","SI20TPE5A7-25 FS","SI20TPE5A7-25",126,,126,,29,,29,,88,528,"HK1003 -Blackpoint D2 - Rev.0E DD30092021"
1-5212,SI20TPE5A8-26,"MEDIA  AVAILABLE TP-E5",5121,"HK1003-Rev.0E-3",TT_Mile,"55902",-,-,-,0,TK_NotStart,21/02/2023,,21/02/2023,,"SI20TPE5A7-25 FS","SI20TPE5A7-25","SI20TPE5A8-30 FS","SI20TPE5A8-30",133,,133,,31,,31,,91,240,"HK1003 -Blackpoint D2 - Rev.0E DD30092021"
1-5213,SI20TPE3A8-30,"COMMISSIONING OF TP-E3",5121,"HK1003-Rev.0E-3",TT_Task,"55902",-,-,-,0,TK_NotStart,07/03/2023,,27/03/2023,,"SI20TPE3A7-25 FS,SI20TPE3A8-26 FS","SI20TPE3A7-25,SI20TPE3A8-26","SI20BBA7-51 SS","SI20BBA7-51",135,,138,,31,,32,,92,64,"HK1003 -Blackpoint D2 - Rev.0E DD30092021"
1-5214,SI20TPE3A3-15,"MATERIAL FOR TP INTEGRATION ON SITE TP-E3",5121,"HK1003-Rev.0E-3",TT_Mile,"55902",-,-,-,0,TK_NotStart,27/12/2022,,27/12/2022,,"SI20TPE3A2-5 FS","SI20TPE3A2-5","SI20TPE3A7-25 FS,SI20TPE3A7-20 FS,SI20BZK7-49 FS","SI20TPE3A7-25,SI20TPE3A7-20,SI20BZK7-49",125,,125,,29,,29,,87,64,"HK1003 -Blackpoint D2 - Rev.0E DD30092021"
1-5215,SI20TPE3A7-25,"TERMINATION OF TP-E3",5121,"HK1003-Rev.0E-3",TT_Task,"55902",-,-,-,0,TK_NotStart,21/02/2023,,06/03/2023,,"SI20TPE3A3-15 FS,SI20TPE3A7-20 FS,SI20TPE3A2-16 FS","SI20TPE3A3-15,SI20TPE3A7-20,SI20TPE3A2-16","SI20TPE3A8-30 FS,SI20TPE3A8-26 FS,SI20BZK7-50 SS","SI20TPE3A8-30,SI20TPE3A8-26,SI20BZK7-50",133,,135,,31,,31,,91,64,"HK1003 -Blackpoint D2 - Rev.0E DD30092021"
1-5216,SI20TPE3A2-5,"TECHNICAL CLARIFICATION WITH CUSTOMER / DESIGN FOR CONNECTION OF TP-E3",5121,"HK1003-Rev.0E-3",TT_Task,"55902",-,-,-,100,TK_Complete,30/04/2021,30/04/2021,27/05/2021,27/05/2021,"SI-----1-05 FS","SI-----1-05","SI20TPE3A2-10 FS,SI20TPE3A3-15 FS","SI20TPE3A2-10,SI20TPE3A3-15",38,38,42,42,9,9,9,9,10,,"HK1003 -Blackpoint D2 - Rev.0E DD30092021"
1-5217,SI20TPE3A2-10,"FINAL AGREEMENT WITH CUSTOMER / ACCESS TIME / REQUIREMENTS TO TP ALIGNED TP-E3",5121,"HK1003-Rev.0E-3",TT_Mile,"55902",-,-,-,100,TK_Complete,28/05/2021,28/05/2021,28/05/2021,28/05/2021,"SI20TPE3A2-5 FS","SI20TPE3A2-5","SI20TPE3A7-20 FS,SI20TPE3A2-11 FS,SI--C--2C50 FS","SI20TPE3A7-20,SI20TPE3A2-11,SI--C--2C50",42,42,42,42,10,10,10,10,14,,"HK1003 -Blackpoint D2 - Rev.0E DD30092021"
1-5218,SI20TPE3A7-20,"INSTALLATION OF CONNECTION MATERIAL IN CUSTOMER SITE TP-E3",5121,"HK1003-Rev.0E-3",TT_Task,"55902",-,-,-,0,TK_NotStart,27/12/2022,,23/01/2023,,"SI20TPE3A2-10 FS,SI20TPE3A3-15 FS,SI20TPE3A2-11 FS,SI20TP-258& FS","SI20TPE3A2-10,SI20TPE3A3-15,SI20TPE3A2-11,SI20TP-258&","SI20TPE3A7-25 FS,SI20TPE3A2-16 FS,SI20BZK7-49 FS","SI20TPE3A7-25,SI20TPE3A2-16,SI20BZK7-49",125,,129,,29,,30,,87,64,"HK1003 -Blackpoint D2 - Rev.0E DD30092021"
1-5219,SI20TPE3A2-11,"UPDATE OF TRANSITION PLAN TP-E3",5121,"HK1003-Rev.0E-3",TT_Task,"55902",-,-,-,0,TK_NotStart,20/12/2022,,26/12/2022,,"SI20TPE3A2-10 FS","SI20TPE3A2-10","SI20TPE3A7-20 FS","SI20TPE3A7-20",124,,125,,29,,29,,87,64,"HK1003 -Blackpoint D2 - Rev.0E DD30092021"
1-5220,SI20TPE3A2-16,"ALL RELEVANT PERMITS & LOTO AVAILABLE FROM CUSTOMER TP-E3",5121,"HK1003-Rev.0E-3",TT_Mile,"55902",-,-,-,0,TK_NotStart,21/02/2023,,21/02/2023,,"SI20TPE3A7-20 FS","SI20TPE3A7-20","SI20TPE3A7-25 FS","SI20TPE3A7-25",133,,133,,31,,31,,91,64,"HK1003 -Blackpoint D2 - Rev.0E DD30092021"
1-5221,SI20TPE3A8-26,"MEDIA  AVAILABLE TP-E3",5121,"HK1003-Rev.0E-3",TT_Mile,"55902",-,-,-,0,TK_NotStart,07/03/2023,,07/03/2023,,"SI20TPE3A7-25 FS","SI20TPE3A7-25","SI20TPE3A8-30 FS","SI20TPE3A8-30",135,,135,,31,,31,,92,64,"HK1003 -Blackpoint D2 - Rev.0E DD30092021"
1-5222,SI20TPE2A8-30,"COMMISSIONING OF TP-E2",5121,"HK1003-Rev.0E-3",TT_Task,"55902",-,-,-,0,TK_NotStart,23/05/2023,,12/06/2023,,"SI20TPE2A7-25 FS,SI20TPE2A8-26 FS","SI20TPE2A7-25,SI20TPE2A8-26","SI20BBA7-55 SS","SI20BBA7-55",146,,149,,34,,34,,97,80,"HK1003 -Blackpoint D2 - Rev.0E DD30092021"
1-5223,SI20TPE2A3-15,"MATERIAL FOR TP INTEGRATION ON SITE TP-E2",5121,"HK1003-Rev.0E-3",TT_Mile,"55902",-,-,-,0,TK_NotStart,11/04/2023,,11/04/2023,,"SI20TPE2A2-5 FS","SI20TPE2A2-5","SI20TPE2A7-25 FS,SI20TPE2A7-20 FS","SI20TPE2A7-25,SI20TPE2A7-20",140,,140,,32,,32,,94,80,"HK1003 -Blackpoint D2 - Rev.0E DD30092021"
1-5224,SI20TPE2A7-25,"TERMINATION OF TP-E2",5121,"HK1003-Rev.0E-3",TT_Task,"55902",-,-,-,0,TK_NotStart,09/05/2023,,22/05/2023,,"SI20TPE2A3-15 FS,SI20TPE2A7-20 FS,SI20TPE2A2-16 FS","SI20TPE2A3-15,SI20TPE2A7-20,SI20TPE2A2-16","SI20TPE2A8-30 FS,SI20TPE2A8-26 FS,SI20BZK7-202 SS","SI20TPE2A8-30,SI20TPE2A8-26,SI20BZK7-202",144,,146,,33,,34,,97,80,"HK1003 -Blackpoint D2 - Rev.0E DD30092021"
1-5225,SI20TPE2A2-5,"TECHNICAL CLARIFICATION WITH CUSTOMER / DESIGN FOR CONNECTION OF TP-E2",5121,"HK1003-Rev.0E-3",TT_Task,"55902",-,-,-,100,TK_Complete,30/04/2021,30/04/2021,27/05/2021,27/05/2021,"SI-----1-05 FS","SI-----1-05","SI20TPE2A2-10 FS,SI20TPE2A3-15 FS","SI20TPE2A2-10,SI20TPE2A3-15",38,38,42,42,9,9,9,9,10,,"HK1003 -Blackpoint D2 - Rev.0E DD30092021"
1-5226,SI20TPE2A2-10,"FINAL AGREEMENT WITH CUSTOMER / ACCESS TIME / REQUIREMENTS TO TP ALIGNED TP-E2",5121,"HK1003-Rev.0E-3",TT_Mile,"55902",-,-,-,100,TK_Complete,28/05/2021,28/05/2021,28/05/2021,28/05/2021,"SI20TPE2A2-5 FS","SI20TPE2A2-5","SI20TPE2A7-20 FS,SI20TPE2A2-11 FS,SI--C--2C50 FS","SI20TPE2A7-20,SI20TPE2A2-11,SI--C--2C50",42,42,42,42,10,10,10,10,14,,"HK1003 -Blackpoint D2 - Rev.0E DD30092021"
1-5227,SI20TPE2A7-20,"INSTALLATION OF CONNECTION MATERIAL IN CUSTOMER SITE TP-E2",5121,"HK1003-Rev.0E-3",TT_Task,"55902",-,-,-,0,TK_NotStart,11/04/2023,,08/05/2023,,"SI20TPE2A2-10 FS,SI20TPE2A3-15 FS,SI20TPE2A2-11 FS,SI20TP-259& FS","SI20TPE2A2-10,SI20TPE2A3-15,SI20TPE2A2-11,SI20TP-259&","SI20TPE2A7-25 FS,SI20TPE2A2-16 FS,SI20BZK7-201 SS","SI20TPE2A7-25,SI20TPE2A2-16,SI20BZK7-201",140,,144,,32,,33,,94,80,"HK1003 -Blackpoint D2 - Rev.0E DD30092021"
1-5228,SI20TPE2A2-11,"UPDATE OF TRANSITION PLAN TP-E2",5121,"HK1003-Rev.0E-3",TT_Mile,"55902",-,-,-,0,TK_NotStart,11/04/2023,,11/04/2023,,"SI20TPE2A2-10 FS","SI20TPE2A2-10","SI20TPE2A7-20 FS","SI20TPE2A7-20",140,,140,,32,,32,,94,80,"HK1003 -Blackpoint D2 - Rev.0E DD30092021"
1-5229,SI20TPE2A2-16,"ALL RELEVANT PERMITS & LOTO AVAILABLE FROM CUSTOMER TP-E2",5121,"HK1003-Rev.0E-3",TT_Mile,"55902",-,-,-,0,TK_NotStart,09/05/2023,,09/05/2023,,"SI20TPE2A7-20 FS","SI20TPE2A7-20","SI20TPE2A7-25 FS","SI20TPE2A7-25",144,,144,,33,,33,,97,80,"HK1003 -Blackpoint D2 - Rev.0E DD30092021"
1-5230,SI20TPE2A8-26,"MEDIA  AVAILABLE TP-E2",5121,"HK1003-Rev.0E-3",TT_Mile,"55902",-,-,-,0,TK_NotStart,23/05/2023,,23/05/2023,,"SI20TPE2A7-25 FS","SI20TPE2A7-25","SI20TPE2A8-30 FS","SI20TPE2A8-30",146,,146,,34,,34,,97,80,"HK1003 -Blackpoint D2 - Rev.0E DD30092021"
1-5231,SI20TPE6A8-30,"COMMISSIONING OF TP-E6",5121,"HK1003-Rev.0E-3",TT_Task,"55902",-,-,-,0,TK_NotStart,07/02/2023,,13/02/2023,,"SI20TPE6A7-25 FS,SI20TPE6A8-26 FS","SI20TPE6A7-25,SI20TPE6A8-26","SI20BU-8-25 FS","SI20BU-8-25",131,,132,,30,,30,,90,16,"HK1003 -Blackpoint D2 - Rev.0E DD30092021"
1-5232,SI20TPE6A3-15,"MATERIAL FOR TP INTEGRATION ON SITE TP-E6",5121,"HK1003-Rev.0E-3",TT_Mile,"55902",-,-,-,0,TK_NotStart,27/12/2022,,27/12/2022,,"SI20TPE6A2-5 FS","SI20TPE6A2-5","SI20TPE6A7-25 FS,SI20TPE6A7-20 FS","SI20TPE6A7-25,SI20TPE6A7-20",125,,125,,29,,29,,87,16,"HK1003 -Blackpoint D2 - Rev.0E DD30092021"
1-5233,SI20TPE6A7-25,"TERMINATION OF TP-E6",5121,"HK1003-Rev.0E-3",TT_Task,"55902",-,-,-,0,TK_NotStart,24/01/2023,,06/02/2023,,"SI20TPE6A3-15 FS,SI20TPE6A7-20 FS,SI20TPE6A2-16 FS","SI20TPE6A3-15,SI20TPE6A7-20,SI20TPE6A2-16","SI20TPE6A8-30 FS,SI20TPE6A8-26 FS","SI20TPE6A8-30,SI20TPE6A8-26",129,,131,,30,,30,,89,16,"HK1003 -Blackpoint D2 - Rev.0E DD30092021"
1-5234,SI20TPE6A2-5,"TECHNICAL CLARIFICATION WITH CUSTOMER / DESIGN FOR CONNECTION OF TP-E6",5121,"HK1003-Rev.0E-3",TT_Task,"55902",-,-,-,100,TK_Complete,30/04/2021,30/04/2021,27/05/2021,27/05/2021,"SI-----1-05 FS","SI-----1-05","SI20TPE6A2-10 FS,SI20TPE6A3-15 FS","SI20TPE6A2-10,SI20TPE6A3-15",38,38,42,42,9,9,9,9,10,,"HK1003 -Blackpoint D2 - Rev.0E DD30092021"
1-5235,SI20TPE6A2-10,"FINAL AGREEMENT WITH CUSTOMER / ACCESS TIME / REQUIREMENTS TO TP ALIGNED TP-E6",5121,"HK1003-Rev.0E-3",TT_Mile,"55902",-,-,-,100,TK_Complete,28/05/2021,28/05/2021,28/05/2021,28/05/2021,"SI20TPE6A2-5 FS","SI20TPE6A2-5","SI20TPE6A7-20 FS,SI20TPE6A2-11 FS,SI--C--2C50 FS","SI20TPE6A7-20,SI20TPE6A2-11,SI--C--2C50",42,42,42,42,10,10,10,10,14,,"HK1003 -Blackpoint D2 - Rev.0E DD30092021"
1-5236,SI20TPE6A7-20,"INSTALLATION OF CONNECTION MATERIAL IN CUSTOMER SITE TP-E6",5121,"HK1003-Rev.0E-3",TT_Task,"55902",-,-,-,0,TK_NotStart,27/12/2022,,23/01/2023,,"SI20TPE6A2-10 FS,SI20TPE6A3-15 FS,SI20TPE6A2-11 FS,SI20TP-265& FS","SI20TPE6A2-10,SI20TPE6A3-15,SI20TPE6A2-11,SI20TP-265&","SI20TPE6A7-25 FS,SI20TPE6A2-16 FS","SI20TPE6A7-25,SI20TPE6A2-16",125,,129,,29,,30,,87,16,"HK1003 -Blackpoint D2 - Rev.0E DD30092021"
1-5237,SI20TPE6A2-11,"UPDATE OF TRANSITION PLAN TP-E6",5121,"HK1003-Rev.0E-3",TT_Mile,"55902",-,-,-,0,TK_NotStart,27/12/2022,,27/12/2022,,"SI20TPE6A2-10 FS","SI20TPE6A2-10","SI20TPE6A7-20 FS","SI20TPE6A7-20",125,,125,,29,,29,,87,16,"HK1003 -Blackpoint D2 - Rev.0E DD30092021"
1-5238,SI20TPE6A2-16,"ALL RELEVANT PERMITS & LOTO AVAILABLE FROM CUSTOMER TP-E6",5121,"HK1003-Rev.0E-3",TT_Mile,"55902",-,-,-,0,TK_NotStart,24/01/2023,,24/01/2023,,"SI20TPE6A7-20 FS","SI20TPE6A7-20","SI20TPE6A7-25 FS","SI20TPE6A7-25",129,,129,,30,,30,,89,16,"HK1003 -Blackpoint D2 - Rev.0E DD30092021"
1-5239,SI20TPE6A8-26,"MEDIA  AVAILABLE TP-E6",5121,"HK1003-Rev.0E-3",TT_Mile,"55902",-,-,-,0,TK_NotStart,07/02/2023,,07/02/2023,,"SI20TPE6A7-25 FS","SI20TPE6A7-25","SI20TPE6A8-30 FS","SI20TPE6A8-30",131,,131,,30,,30,,90,16,"HK1003 -Blackpoint D2 - Rev.0E DD30092021"
1-5240,SI20TPE6II8-30,"COMMISSIONING OF TP-E6ii",5121,"HK1003-Rev.0E-3",TT_Task,"55902",-,-,-,0,TK_NotStart,07/02/2023,,13/02/2023,,"SI20TPE6II7-25 FS,SI20TPE6II8-26 FS","SI20TPE6II7-25,SI20TPE6II8-26","SI20BU-8-25 FS","SI20BU-8-25",131,,132,,30,,30,,90,16,"HK1003 -Blackpoint D2 - Rev.0E DD30092021"
1-5241,SI20TPE6II3-15,"MATERIAL FOR TP INTEGRATION ON SITE TP-E6ii",5121,"HK1003-Rev.0E-3",TT_Mile,"55902",-,-,-,0,TK_NotStart,27/12/2022,,27/12/2022,,"SI20TPE6II2-5 FS","SI20TPE6II2-5","SI20TPE6II7-25 FS,SI20TPE6II7-20 FS","SI20TPE6II7-25,SI20TPE6II7-20",125,,125,,29,,29,,87,16,"HK1003 -Blackpoint D2 - Rev.0E DD30092021"
1-5242,SI20TPE6II7-25,"TERMINATION OF TP-E6ii",5121,"HK1003-Rev.0E-3",TT_Task,"55902",-,-,-,0,TK_NotStart,24/01/2023,,06/02/2023,,"SI20TPE6II3-15 FS,SI20TPE6II7-20 FS,SI20TPE6II2-16 FS","SI20TPE6II3-15,SI20TPE6II7-20,SI20TPE6II2-16","SI20TPE6II8-30 FS,SI20TPE6II8-26 FS","SI20TPE6II8-30,SI20TPE6II8-26",129,,131,,30,,30,,89,16,"HK1003 -Blackpoint D2 - Rev.0E DD30092021"
1-5243,SI20TPE6II2-5,"TECHNICAL CLARIFICATION WITH CUSTOMER / DESIGN FOR CONNECTION OF TP-E6ii",5121,"HK1003-Rev.0E-3",TT_Task,"55902",-,-,-,100,TK_Complete,30/04/2021,30/04/2021,27/05/2021,27/05/2021,"SI-----1-05 FS","SI-----1-05","SI20TPE6II2-10 FS,SI20TPE6II3-15 FS","SI20TPE6II2-10,SI20TPE6II3-15",38,38,42,42,9,9,9,9,10,,"HK1003 -Blackpoint D2 - Rev.0E DD30092021"
1-5244,SI20TPE6II2-10,"FINAL AGREEMENT WITH CUSTOMER / ACCESS TIME / REQUIREMENTS TO TP ALIGNED TP-E6ii",5121,"HK1003-Rev.0E-3",TT_Mile,"55902",-,-,-,100,TK_Complete,28/05/2021,28/05/2021,28/05/2021,28/05/2021,"SI20TPE6II2-5 FS","SI20TPE6II2-5","SI20TPE6II7-20 FS,SI20TPE6II2-11 FS,SI--C--2C50 FS","SI20TPE6II7-20,SI20TPE6II2-11,SI--C--2C50",42,42,42,42,10,10,10,10,14,,"HK1003 -Blackpoint D2 - Rev.0E DD30092021"
1-5245,SI20TPE6II7-20,"INSTALLATION OF CONNECTION MATERIAL IN CUSTOMER SITE TP-E6ii",5121,"HK1003-Rev.0E-3",TT_Task,"55902",-,-,-,0,TK_NotStart,27/12/2022,,23/01/2023,,"SI20TPE6II2-10 FS,SI20TPE6II3-15 FS,SI20TPE6II2-11 FS,SI20TP-266& FS","SI20TPE6II2-10,SI20TPE6II3-15,SI20TPE6II2-11,SI20TP-266&","SI20TPE6II7-25 FS,SI20TPE6II2-16 FS","SI20TPE6II7-25,SI20TPE6II2-16",125,,129,,29,,30,,87,16,"HK1003 -Blackpoint D2 - Rev.0E DD30092021"
1-5246,SI20TPE6II2-11,"UPDATE OF TRANSITION PLAN TP-E6ii",5121,"HK1003-Rev.0E-3",TT_Mile,"55902",-,-,-,0,TK_NotStart,27/12/2022,,27/12/2022,,"SI20TPE6II2-10 FS","SI20TPE6II2-10","SI20TPE6II7-20 FS","SI20TPE6II7-20",125,,125,,29,,29,,87,16,"HK1003 -Blackpoint D2 - Rev.0E DD30092021"
1-5247,SI20TPE6II2-16,"ALL RELEVANT PERMITS & LOTO AVAILABLE FROM CUSTOMER TP-E6ii",5121,"HK1003-Rev.0E-3",TT_Mile,"55902",-,-,-,0,TK_NotStart,24/01/2023,,24/01/2023,,"SI20TPE6II7-20 FS","SI20TPE6II7-20","SI20TPE6II7-25 FS","SI20TPE6II7-25",129,,129,,30,,30,,89,16,"HK1003 -Blackpoint D2 - Rev.0E DD30092021"
1-5248,SI20TPE6II8-26,"MEDIA  AVAILABLE TP-E6ii",5121,"HK1003-Rev.0E-3",TT_Mile,"55902",-,-,-,0,TK_NotStart,07/02/2023,,07/02/2023,,"SI20TPE6II7-25 FS","SI20TPE6II7-25","SI20TPE6II8-30 FS","SI20TPE6II8-30",131,,131,,30,,30,,90,16,"HK1003 -Blackpoint D2 - Rev.0E DD30092021"
1-5249,SI20SD-310&,"SHUTDOWN PERIOD - C4 OUTAGE",5121,"HK1003-Rev.0E-3",TT_Task,"55902",-,-,-,100,TK_Complete,08/01/2021,08/01/2021,21/06/2021,21/06/2021,"SI-----1-01 FS","SI-----1-01","SI20SD-315& FS,SI20BZK7B43 SS","SI20SD-315&,SI20BZK7B43",22,22,46,46,5,5,10,10,1,,"HK1003 -Blackpoint D2 - Rev.0E DD30092021"
1-5250,SI20SD-315&,"SHUTDOWN PERIOD - C1 OUTAGE",5121,"HK1003-Rev.0E-3",TT_Task,"55902",-,-,-,0,TK_NotStart,01/12/2021,,31/12/2021,,"SI20SD-310& FS","SI20SD-310&","SI20SD-325& FS,SI20BZK7B44 SS","SI20SD-325&,SI20BZK7B44",69,,73,,16,,17,,40,3408,"HK1003 -Blackpoint D2 - Rev.0E DD30092021"
1-5251,SI20SD-325&,"SHUTDOWN PERIOD - C3 OUTAGE",5121,"HK1003-Rev.0E-3",TT_Task,"55902",-,-,-,0,TK_NotStart,01/02/2022,,28/02/2022,,"SI20SD-315& FS","SI20SD-315&","SI20SD-320& SS,SI20BZK7B45 SS","SI20SD-320&,SI20BZK7B45",78,,82,,18,,19,,47,3408,"HK1003 -Blackpoint D2 - Rev.0E DD30092021"
1-5252,SI20SD-320&,"SHUTDOWN PERIOD - C2 OUTAGE",5121,"HK1003-Rev.0E-3",TT_Task,"55902",-,-,-,0,TK_NotStart,01/02/2022,,28/02/2022,,"SI20SD-325& SS","SI20SD-325&","SI20BZK7B45 SS","SI20BZK7B45",78,,82,,18,,19,,47,3408,"HK1003 -Blackpoint D2 - Rev.0E DD30092021"
1-5253,SI20TPE8A7-16,"TERMINAL POINT READY FOR CONNECTION TP-E8",5121,"HK1003-Rev.0E-3",TT_Mile,"55902",-,-,-,0,TK_NotStart,23/09/2022,,23/09/2022,,"SI20TP-263& FS,SI20BAW5C17 FS","SI20TP-263&,SI20BAW5C17","CL20TPE8A7-26 FS","CL20TPE8A7-26",111,,111,,26,,26,,81,3608,"HK1003 -Blackpoint D2 - Rev.0E DD30092021"
1-5254,CL20TPE8A7-26,"CONNECTION TO TP BY CLIENT TP-E8",5121,"HK1003-Rev.0E-3",TT_Task,"55902",-,-,-,0,TK_NotStart,18/12/2023,,31/12/2023,,"SI20TPE8A7-16 FS","SI20TPE8A7-16","SI-----1-09 FS","SI-----1-09",176,,178,,41,,41,,99,0,"HK1003 -Blackpoint D2 - Rev.0E DD30092021"
1-5255,SI20TPE7A7-17,"TERMINAL POINT READY FOR CONNECTION TP-E7",5121,"HK1003-Rev.0E-3",TT_Mile,"55902",-,-,-,0,TK_NotStart,28/02/2023,,28/02/2023,,"SI20TP-262& FS,SI20BAW5B15 FS","SI20TP-262&,SI20BAW5B15","CL20TPE7A7-27 FS","CL20TPE7A7-27",134,,134,,31,,31,,92,2344,"HK1003 -Blackpoint D2 - Rev.0E DD30092021"
1-5256,CL20TPE7A7-27,"CONNECTION TO TP BY CLIENT TP-E7",5121,"HK1003-Rev.0E-3",TT_Task,"55902",-,-,-,0,TK_NotStart,18/12/2023,,31/12/2023,,"SI20TPE7A7-17 FS","SI20TPE7A7-17","SI-----1-09 FS","SI-----1-09",176,,178,,41,,41,,99,0,"HK1003 -Blackpoint D2 - Rev.0E DD30092021"
1-5257,CL20TPE9A7-18,"TERMINAL POINT READY FOR CONNECTION TP-E9",5121,"HK1003-Rev.0E-3",TT_Mile,"55902",-,-,-,100,TK_Complete,01/07/2021,01/07/2021,01/07/2021,01/07/2021,"SI20TP-267& FS","SI20TP-267&","SI20TPE9A7-28 FS,SI-----5-20 FS","SI20TPE9A7-28,SI-----5-20",47,47,47,47,11,11,11,11,20,,"HK1003 -Blackpoint D2 - Rev.0E DD30092021"
1-5258,SI20TPE9A7-28,"CONNECTION TO TP TP-E9",5121,"HK1003-Rev.0E-3",TT_Task,"55902",-,-,-,100,TK_Complete,01/07/2021,01/07/2021,14/07/2021,14/07/2021,"CL20TPE9A7-18 FS,SI-----5-20 FS","CL20TPE9A7-18,SI-----5-20","SI--2227-68 FS,SI--2226-66 FS","SI--2227-68,SI--2226-66",47,47,49,49,11,11,11,11,20,,"HK1003 -Blackpoint D2 - Rev.0E DD30092021"
1-5259,SI--UMC2B92,"(MS3) STEEL STRUCTURE DATA AVAILABLE 1st AMENDMENT SUBMISSION 20UMC",5121,"HK1003-Rev.0E-3",TT_FinMile,"55902",-,-,-,100,TK_Complete,31/05/2021,31/05/2021,31/05/2021,31/05/2021,"SI--SMM2-86 FS,SP20MBL2-60 FS,SI--SMM2-91 FS","SI--SMM2-86,SP20MBL2-60,SI--SMM2-91","SI--UMC2B93 FS,SI--UMC2B95 FS","SI--UMC2B93,SI--UMC2B95",43,43,43,43,10,10,10,10,15,,"HK1003 -Blackpoint D2 - Rev.0E DD30092021"
1-5260,SI--UMC2B93,"DETAIL DESIGN STEEL STRUCTURE / CRANE (AFTER RECEIVING FINAL MS3) 20UMC",5121,"HK1003-Rev.0E-3",TT_Task,"55902",-,-,-,100,TK_Complete,08/06/2021,08/06/2021,06/08/2021,06/08/2021,"SI--UMC2B92 FS,SI--UMC2B78 FS,SI--UMC2B95 FS","SI--UMC2B92,SI--UMC2B78,SI--UMC2B95","SI--UMC2B94 FS,SI--UMC2B94 FF,SI20UMC3B25 FS,SI20UMC3E26 FS","SI--UMC2B94,SI--UMC2B94,SI20UMC3B25,SI20UMC3E26",44,44,52,52,10,10,12,12,16,,"HK1003 -Blackpoint D2 - Rev.0E DD30092021"
1-5261,SI--UMC2B94,"BD - SUBMISSION & APPROVAL - STEEL STRUCTURE 20UMC (Incl. Crane Walkawy) (AMENDMENT SUBMISSION)",5121,"HK1003-Rev.0E-3",TT_Task,"55902",-,-,-,23,TK_Active,23/09/2021,23/09/2021,22/10/2021,,"SI--UMC2B93 FS,SI--UMC2B80 FS,SI--UMC2B70 FS,SI--UMC2B93 FF","SI--UMC2B93,SI--UMC2B80,SI--UMC2B70,SI--UMC2B93","SI20UMC3B25 FF","SI20UMC3B25",59,59,63,,13,13,14,,30,656,"HK1003 -Blackpoint D2 - Rev.0E DD30092021"
1-5262,SI20UMC2B67,"BD - CONSENT LETTER DETAIL DESIGN CONCRETE - PRELIMINARY 20UMC",5121,"HK1003-Rev.0E-3",TT_Task,"55902",-,-,-,100,TK_Complete,15/05/2021,15/05/2021,25/06/2021,25/06/2021,"SI20UMC2B04 FS","SI20UMC2B04","SI20UMC2B40 FS,SI20UMC2B68 FS","SI20UMC2B40,SI20UMC2B68",41,41,46,46,9,9,10,10,13,,"HK1003 -Blackpoint D2 - Rev.0E DD30092021"
1-5263,SI20UMC2B68,"BD - BA10 COMMENCEMENT OF WORK CONCRETE 20UMC",5121,"HK1003-Rev.0E-3",TT_FinMile,"55902",-,-,-,0,TK_NotStart,30/09/2021,,30/09/2021,,"SI20UMC2B67 FS","SI20UMC2B67","SI20UMC5B85 FS","SI20UMC5B85",60,,60,,14,,14,,30,688,"HK1003 -Blackpoint D2 - Rev.0E DD30092021"
1-5264,SI20UMC2B70,"BD - BA10 COMMENCEMENT OF WORK CEP/LDK - PIT / TRENCH 20UMC",5121,"HK1003-Rev.0E-3",TT_FinMile,"55902",-,-,-,100,TK_Complete,15/07/2021,15/07/2021,15/07/2021,15/07/2021,"SI--UMC2A81 FS","SI--UMC2A81","SI20UMC5Y10 FS","SI20UMC5Y10",49,49,49,49,11,11,11,11,22,,"HK1003 -Blackpoint D2 - Rev.0E DD30092021"
1-5265,SI--UMC2Y83,"(MS3) CONCRETE STRUCTURE FINAL DIMENSIONS, LOADS AVAILABLE CEP/LDK PIT 20UMC",5121,"HK1003-Rev.0E-3",TT_FinMile,"55902",-,-,-,100,TK_Complete,15/05/2021,15/05/2021,15/05/2021,15/05/2021,"SI--LCB2B60 FS","SI--LCB2B60","SI20UMC2B20 FS","SI20UMC2B20",41,41,41,41,9,9,9,9,13,,"HK1003 -Blackpoint D2 - Rev.0E DD30092021"
1-5266,SI--UMC2A82,"BD -CONSENT LETTER TURBOSET DETAIL DESIGN CONCRETE 20UMC",5121,"HK1003-Rev.0E-3",TT_Task,"55902",-,-,-,100,TK_Complete,15/06/2021,15/06/2021,26/07/2021,27/07/2021,"SI--UMC2A04 FS","SI--UMC2A04","SI20UMC2B71 FS","SI20UMC2B71",45,45,51,51,10,10,11,12,17,,"HK1003 -Blackpoint D2 - Rev.0E DD30092021"
1-5267,SI20UMC2B71,"BD - BA10 COMMENCEMENT OF WORK TURBOSET FOUNDATION 20UMC",5121,"HK1003-Rev.0E-3",TT_FinMile,"55902",-,-,-,0,TK_NotStart,06/10/2021,,06/10/2021,,"SI--UMC2A82 FS,SI--UMC2A90 FS","SI--UMC2A82,SI--UMC2A90","SI--UMC2A75 FS,SI20UMC5A15.11 FS","SI--UMC2A75,SI20UMC5A15.11",61,,61,,14,,14,,32,112,"HK1003 -Blackpoint D2 - Rev.0E DD30092021"
1-5268,SI--UMC2B95,"BASIC DESIGN / STEEL AFTER FINAL MS3 INPUT 20UMC",5121,"HK1003-Rev.0E-3",TT_Task,"55902",-,-,-,100,TK_Complete,18/05/2021,18/05/2021,07/06/2021,07/06/2021,"SI--UMC2B92 FS","SI--UMC2B92","SI--UMC2B93 FS","SI--UMC2B93",41,41,44,44,9,9,10,10,13,,"HK1003 -Blackpoint D2 - Rev.0E DD30092021"
1-5269,SI20UMC3E26,"FABRICATION DESIGN, FABRICATION, TRANSPORT STEEL PLATFORMS LOT1 20UMC (CRANE PLATFORM / MAINTENANCE PLATFORM)",5121,"HK1003-Rev.0E-3",TT_Task,"55902",-,-,-,5,TK_Active,23/09/2021,23/09/2021,14/02/2022,,"SI--UMC2B75 FS,SI--UMC2B93 FS","SI--UMC2B75,SI--UMC2B93","SI20UMC5E69 FS,SI20UMC5E77 FS","SI20UMC5E69,SI20UMC5E77",59,59,80,,13,13,18,,30,96,"HK1003 -Blackpoint D2 - Rev.0E DD30092021"
1-5270,SI--UMC2E79,"(MS3) STEEL PLATFORMS COND. PIT. FINAL DIMENSIONS, LOADS AVAILABLE LOT1 (CEP & LDK) 20UMC",5121,"HK1003-Rev.0E-3",TT_FinMile,"55902",-,-,-,100,TK_Complete,29/03/2021,29/03/2021,29/03/2021,29/03/2021,"SI--UMC2E60 FS","SI--UMC2E60","SI--UMC2E70 FS,SI--UMC2E80 FS","SI--UMC2E70,SI--UMC2E80",34,34,34,34,8,8,8,8,7,,"HK1003 -Blackpoint D2 - Rev.0E DD30092021"
1-5271,SI--UMC2E80,"BASIC DESIGN STEEL PLATFORMS LOT1 20UMC",5121,"HK1003-Rev.0E-3",TT_Task,"55902",-,-,-,100,TK_Complete,30/03/2021,30/03/2021,02/05/2021,02/05/2021,"SI--UMC2E60 FS,SI--UMC2E79 FS","SI--UMC2E60,SI--UMC2E79","SI--UMC2E70 FS","SI--UMC2E70",34,34,39,39,8,8,9,9,7,,"HK1003 -Blackpoint D2 - Rev.0E DD30092021"
1-5272,SI20UMC2B72,"BD - BA10 COMMENCEMENT OF WORK STEEL PLATFORM LOT1 20UMC",5121,"HK1003-Rev.0E-3",TT_FinMile,"55902",-,-,-,0,TK_NotStart,27/11/2021,,27/11/2021,,"SI--UMC2B88 FS","SI--UMC2B88","SI20UMC5E69 FS","SI20UMC5E69",69,,69,,16,,16,,39,776,"HK1003 -Blackpoint D2 - Rev.0E DD30092021"
1-5273,SI--UMC2E84,"HANDRAILS AND GRATING DWGS & CONNECTION FORCE REPORT LOT2 20UMC",5121,"HK1003-Rev.0E-3",TT_Task,"55902",-,-,-,100,TK_Complete,25/06/2021,25/06/2021,15/07/2021,15/07/2021,"SI--UMC2E83 FF","SI--UMC2E83","SI--UMC2F76 FS","SI--UMC2F76",46,46,49,49,10,10,11,11,19,,"HK1003 -Blackpoint D2 - Rev.0E DD30092021"
1-5274,SI--UMC2E81,"(MS3) STEEL PLATFORMS COND. PIT. FINAL DIMENSIONS, LOADS AVAILABLE LOT2 (ST GENO,COND, BUSDUCT, MSC.) 20UMC",5121,"HK1003-Rev.0E-3",TT_FinMile,"55902",-,-,-,100,TK_Complete,27/04/2021,27/04/2021,27/04/2021,27/04/2021,"SI--UMC2E60 FS","SI--UMC2E60","SI--UMC2E83 FS,SI--UMC2E83 FF,SI--UMC2E82 FS","SI--UMC2E83,SI--UMC2E83,SI--UMC2E82",38,38,38,38,8,8,8,8,10,,"HK1003 -Blackpoint D2 - Rev.0E DD30092021"
1-5275,SI--UMC2F76,"(F) DETAIL DESIGN STEEL PLATFORMS WITH CONTRACTOR LOT2 20UMC",5121,"HK1003-Rev.0E-3",TT_FinMile,"55902",-,-,-,0,TK_NotStart,19/10/2021,,19/10/2021,,"SI--UMC2E84 FS,SI--UMC2E83 FS,SI--UMC2B96 FS","SI--UMC2E84,SI--UMC2E83,SI--UMC2B96","SI20UMC3E28 FS","SI20UMC3E28",63,,63,,14,,14,,35,448,"HK1003 -Blackpoint D2 - Rev.0E DD30092021"
1-5276,SI--UMC2E83,"DETAIL DESIGN STEEL PLATFORMS LOT2 20UMC",5121,"HK1003-Rev.0E-3",TT_Task,"55902",-,-,-,100,TK_Complete,01/06/2021,01/06/2021,15/07/2021,15/07/2021,"SI--UMC2E81 FS,SI--UMC2E81 FF,SI--UMC2E82 FS","SI--UMC2E81,SI--UMC2E81,SI--UMC2E82","SI--UMC2F76 FS,SI--UMC2B96 FS,SI--UMC2B97 FS,SI--UMC2E84 FF","SI--UMC2F76,SI--UMC2B96,SI--UMC2B97,SI--UMC2E84",43,43,49,49,10,10,11,11,15,,"HK1003 -Blackpoint D2 - Rev.0E DD30092021"
1-5277,SI20UMC3E28,"FABRICATION DESIGN, FABRICATION, TRANSPORT STEEL PLATFORMS LOT2 20UMC",5121,"HK1003-Rev.0E-3",TT_Task,"55902",-,-,-,0,TK_NotStart,20/10/2021,,13/03/2022,,"SI--UMC2F76 FS,SI--UMC2B98 FF,SI--UMC2B96 FS,SI20UMC2B73 FF","SI--UMC2F76,SI--UMC2B98,SI--UMC2B96,SI20UMC2B73","SI20UMC5E57 FS,SI20UMC5E59 FS,SI20UMC5E65 FS,SI20UMC5E63 FS,SI20UMC5E75 FS,SI20UMC5E61 FS,SI20UMC5E73 FS,SI20UMC5E67 FS,SI20UMC5E71 FS","SI20UMC5E57,SI20UMC5E59,SI20UMC5E65,SI20UMC5E63,SI20UMC5E75,SI20UMC5E61,SI20UMC5E73,SI20UMC5E67,SI20UMC5E71",63,,84,,14,,19,,35,448,"HK1003 -Blackpoint D2 - Rev.0E DD30092021"
1-5278,SI--UMC2B96,"BD - SUBMISSION & APPROVAL - STEEL PLATFORMS LOT2 20UMC",5121,"HK1003-Rev.0E-3",TT_Task,"55902",-,-,-,72,TK_Active,18/08/2021,18/08/2021,16/10/2021,,"SI--UMC2E83 FS,SI--UMC2B97 SS,SI-P221-576& FS,SI-P221-575& FS,SI-P221-573& FS,SI-P221-575& SS,SI-P221-576& SS,SI-P221-578& FS","SI--UMC2E83,SI--UMC2B97,SI-P221-576&,SI-P221-575&,SI-P221-573&,SI-P221-575&,SI-P221-576&,SI-P221-578&","SI--UMC2B98 FS,SI--UMC2F76 FS,SI20UMC3E28 FS","SI--UMC2B98,SI--UMC2F76,SI20UMC3E28",54,54,63,,12,12,14,,26,472,"HK1003 -Blackpoint D2 - Rev.0E DD30092021"
1-5279,SI--UMC2B98,"BD - CONSENT LETTER STEEL PLATFORMS LOT2 20UMC",5121,"HK1003-Rev.0E-3",TT_Task,"55902",-,-,-,0,TK_NotStart,17/10/2021,,27/11/2021,,"SI--UMC2B96 FS","SI--UMC2B96","SI20UMC3E28 FF,SI20UMC2B73 FS","SI20UMC3E28,SI20UMC2B73",63,,69,,14,,16,,34,1240,"HK1003 -Blackpoint D2 - Rev.0E DD30092021"
1-5280,SI--UMC2B97,"CLIENT - REVIEW - DETAIL DESIGN - STEEL STRUCTURE LOT2 20UMC",5121,"HK1003-Rev.0E-3",TT_Task,"55902",-,-,-,100,TK_Complete,16/07/2021,16/07/2021,09/08/2021,09/08/2021,"SI--UMC2E83 FS","SI--UMC2E83","SI--UMC2B96 SS","SI--UMC2B96",49,49,53,53,11,11,12,12,22,,"HK1003 -Blackpoint D2 - Rev.0E DD30092021"
1-5281,SI--UMC2E82,"BASIC DESIGN STEEL PLATFORMS LOT2 20UMC",5121,"HK1003-Rev.0E-3",TT_Task,"55902",-,-,-,100,TK_Complete,28/04/2021,28/04/2021,31/05/2021,31/05/2021,"SI--UMC2E81 FS","SI--UMC2E81","SI--UMC2E83 FS","SI--UMC2E83",38,38,43,43,9,9,10,10,10,,"HK1003 -Blackpoint D2 - Rev.0E DD30092021"
1-5282,SI20UMC2B73,"BD - BA10 COMMENCEMENT OF WORK STEEL PLATFORM 20UMC",5121,"HK1003-Rev.0E-3",TT_FinMile,"55902",-,-,-,0,TK_NotStart,04/12/2021,,04/12/2021,,"SI--UMC2B98 FS","SI--UMC2B98","SI20UMC3E28 FF","SI20UMC3E28",70,,70,,16,,16,,40,1240,"HK1003 -Blackpoint D2 - Rev.0E DD30092021"
1-5283,SI20URA2-74,"FIXING FOR CABLE TRAY ,LIGTHING (ETECH) SUBSTRUCTURE-20URA/URD",5121,"HK1003-Rev.0E-3",TT_FinMile,"55902",-,-,-,100,TK_Complete,27/07/2021,27/07/2021,27/07/2021,27/07/2021,"SI--URA2-60 FS","SI--URA2-60","SI--URA2-83 FS,SI--URA2-103 FS","SI--URA2-83,SI--URA2-103",51,51,51,51,12,12,12,12,23,,"HK1003 -Blackpoint D2 - Rev.0E DD30092021"
1-5284,SI20UHA2-75,"BD - BA10 COMMENCEMENT OF WORK CONCRETE 20UHA",5121,"HK1003-Rev.0E-3",TT_FinMile,"55902",-,-,-,0,TK_NotStart,29/10/2021,,29/10/2021,,"SI--UHA2-81 FS","SI--UHA2-81","SI20UHA5-15.03 FS","SI20UHA5-15.03",64,,64,,15,,15,,36,56,"HK1003 -Blackpoint D2 - Rev.0E DD30092021"
1-5285,SI--UHA2-82,"DETAIL DESIGN BARBENDING UHA (BY MCW)",5121,"HK1003-Rev.0E-3",TT_Task,"55902",-,-,-,100,TK_Complete,04/08/2021,04/08/2021,31/08/2021,31/08/2021,"SI--UHA2-79 FF","SI--UHA2-79","SI20UHA5-10 FS,SI20UHA5-05 FS","SI20UHA5-10,SI20UHA5-05",52,52,56,56,12,12,13,13,24,,"HK1003 -Blackpoint D2 - Rev.0E DD30092021"
1-5286,SI--UMC2A83,"DETAIL DESIGN BARBENDING TS FOUND. 20UMC",5121,"HK1003-Rev.0E-3",TT_Task,"55902",-,-,-,100,TK_Complete,10/06/2021,10/06/2021,07/07/2021,07/07/2021,"SI--UMC2A04 FF","SI--UMC2A04","SI20UMC5Z46 FS,SI--UMC2A86 SS","SI20UMC5Z46,SI--UMC2A86",44,44,48,48,10,10,11,11,16,,"HK1003 -Blackpoint D2 - Rev.0E DD30092021"
1-5287,SI--UMC2A84,"DETAIL DESIGN BARBENDING UMC BUILDING 20UMC",5121,"HK1003-Rev.0E-3",TT_Task,"55902",-,-,-,100,TK_Complete,22/07/2021,22/07/2021,03/09/2021,03/09/2021,"SI20UMC2B40 FF","SI20UMC2B40","SI20UMC5B75 FS","SI20UMC5B75",50,50,56,56,11,11,13,13,22,,"HK1003 -Blackpoint D2 - Rev.0E DD30092021"
1-5288,SI--UMC2A85,"DETAIL DESIGN BARBENDING CEP/LDK 20UMC",5121,"HK1003-Rev.0E-3",TT_Task,"55902",-,-,-,100,TK_Complete,17/06/2021,17/06/2021,30/06/2021,30/06/2021,"SI--UMC2A81 FF","SI--UMC2A81","SI20UMC5Z15 FS","SI20UMC5Z15",45,45,47,47,10,10,11,11,17,,"HK1003 -Blackpoint D2 - Rev.0E DD30092021"
1-5289,SI--URA2-92,"BARBENDING AND DRAWINGS SUBSTRUCTURE-20URA/URD",5121,"HK1003-Rev.0E-3",TT_Task,"55902",-,-,-,96,TK_Active,03/09/2021,03/09/2021,30/09/2021,,"SI--URA2-100 FS","SI--URA2-100","SI20PUR2J93 FS,SI20URA5-10 FS","SI20PUR2J93,SI20URA5-10",56,56,60,,13,13,14,,28,1352,"HK1003 -Blackpoint D2 - Rev.0E DD30092021"
1-5290,SI--UBF2-89,"DETAIL DESIGN BARBENDING 20UBE/UBF",5121,"HK1003-Rev.0E-3",TT_Task,"55902",-,-,-,25,TK_Active,23/09/2021,23/09/2021,20/10/2021,,"SI--UBF2-80 FF","SI--UBF2-80","SI20UBF5-05 SS","SI20UBF5-05",59,59,63,,13,13,14,,30,576,"HK1003 -Blackpoint D2 - Rev.0E DD30092021"
1-5291,SI--UBF2-90,"BASIC DESIGN STEEL STRUCTURE INCL. 3D MODEL 20UBE/UBF",5121,"HK1003-Rev.0E-3",TT_Task,"55902",-,-,-,100,TK_Complete,06/06/2021,06/06/2021,21/06/2021,21/06/2021,"SI--UBF2B60 FS","SI--UBF2B60","SI--UBF2B70 FS,SI--BZP2-93 FS","SI--UBF2B70,SI--BZP2-93",44,44,46,46,10,10,10,10,16,,"HK1003 -Blackpoint D2 - Rev.0E DD30092021"
1-5292,SI--UBA2B100,"BASIC DESIGN STEEL STRUCTURE UBA7xxx",5121,"HK1003-Rev.0E-3",TT_Task,"55902",-,-,-,100,TK_Complete,28/05/2021,28/05/2021,23/06/2021,23/06/2021,"SI--UBA2F60 FS","SI--UBA2F60","SI--UBA2B70 FS","SI--UBA2B70",42,42,46,46,10,10,10,10,14,,"HK1003 -Blackpoint D2 - Rev.0E DD30092021"
1-5293,SP20MBL2-102,"(DF) MS3  AIR INTAKE MBL",5121,"HK1003-Rev.0E-3",TT_Mile,"55902",-,-,-,100,TK_Complete,14/05/2021,14/05/2021,14/05/2021,14/05/2021,"SP20MBL2-85 FS","SP20MBL2-85","SP20MBL2-101 FS","SP20MBL2-101",40,40,40,40,9,9,9,9,12,,"HK1003 -Blackpoint D2 - Rev.0E DD30092021"
1-5294,SI20URA3-27,"BASIC DESIGN STEEL STRUCTURE 20URA",5121,"HK1003-Rev.0E-3",TT_Task,"55902",-,-,-,100,TK_Complete,11/06/2021,11/06/2021,01/07/2021,01/07/2021,"SI20URA3-16 FS","SI20URA3-16","SI20URA3-17 FS","SI20URA3-17",44,44,47,47,10,10,11,11,17,,"HK1003 -Blackpoint D2 - Rev.0E DD30092021"
1-5295,SI20UHW3-26,"BASIC DESIGN STEEL STRUCTURE 20UHW",5121,"HK1003-Rev.0E-3",TT_Task,"55902",-,-,-,100,TK_Complete,26/05/2021,26/05/2021,08/06/2021,08/06/2021,"SI20UHW3-16 FS","SI20UHW3-16","SI20UHW3-17 FS","SI20UHW3-17",42,42,44,44,9,9,10,10,14,,"HK1003 -Blackpoint D2 - Rev.0E DD30092021"
1-5296,SI20MBR2B66,"DETAIL DESIGN EXHAUST DIFFUSER FRAME 20MBR",5121,"HK1003-Rev.0E-3",TT_Task,"55902",-,-,-,100,TK_Complete,13/05/2021,13/05/2021,13/07/2021,13/07/2021,"SP20MBR2A85 FS","SP20MBR2A85","SI20MBR2B64 FS,SP20MBR2-60 SS","SI20MBR2B64,SP20MBR2-60",40,40,49,49,9,9,11,11,12,,"HK1003 -Blackpoint D2 - Rev.0E DD30092021"
1-5297,SI20UEN2-106,"BASIC DESIGN STEEL STRUCTURE 20UEN",5121,"HK1003-Rev.0E-3",TT_Task,"55902",-,-,-,100,TK_Complete,06/09/2021,06/09/2021,19/09/2021,19/09/2021,"SI20UEN2-5 FS","SI20UEN2-5","SI20UEN2-6 FS","SI20UEN2-6",57,57,59,59,13,13,13,13,28,,"HK1003 -Blackpoint D2 - Rev.0E DD30092021"
1-5298,SI20MBV3-83,"BD- SUBMISSION & APPROVAL CLEAN / DIRTY OIL TANK MBV90",5121,"HK1003-Rev.0E-3",TT_Task,"55902",-,-,-,0,TK_NotStart,15/10/2021,,13/12/2021,,"SI20MBV2-89 FS,SI20MBV3-27 FS,SI20MBV3-27 FF,SI-P221-568& FS","SI20MBV2-89,SI20MBV3-27,SI20MBV3-27,SI-P221-568&","SI20MBV3-82 FS,SI20MBV3-82 FF,SI20MBV3-82 SS","SI20MBV3-82,SI20MBV3-82,SI20MBV3-82",62,,71,,14,,16,,34,872,"HK1003 -Blackpoint D2 - Rev.0E DD30092021"
1-5299,SI20URD2-75,"BD - BA10 COMMENCEMENT OF WORK CONCRETE 20URD xx",5121,"HK1003-Rev.0E-3",TT_FinMile,"55902",-,-,-,100,TK_Complete,02/07/2021,02/07/2021,02/07/2021,02/07/2021,"SI--URD2-79 FS","SI--URD2-79","","",47,47,47,47,11,11,11,11,20,,"HK1003 -Blackpoint D2 - Rev.0E DD30092021"
1-5300,SI--URD2-93,"DETAIL DESIGN BARBENDING 20URD xx",5121,"HK1003-Rev.0E-3",TT_Task,"55902",-,-,-,100,TK_Complete,25/08/2021,25/08/2021,21/09/2021,21/09/2021,"SI--URD2-78 SS","SI--URD2-78","SI--URD2-75 FS","SI--URD2-75",55,55,59,59,12,12,13,13,27,,"HK1003 -Blackpoint D2 - Rev.0E DD30092021"
1-5301,SI20UBA2B-36,"BASIC DESIGN STEEL STRUCTURE 20UBA1110/20",5121,"HK1003-Rev.0E-3",TT_Task,"55902",-,-,-,0,TK_NotStart,04/10/2021,,24/10/2021,,"SI20UBA2B-5 FS","SI20UBA2B-5","SI20UBA2B-10 FS","SI20UBA2B-10",61,,64,,14,,14,,31,968,"HK1003 -Blackpoint D2 - Rev.0E DD30092021"
1-5302,SI20UBA2B-37,"BASIC DESIGN STEEL STRUCTURE 20UBA7910/20",5121,"HK1003-Rev.0E-3",TT_Task,"55902",-,-,-,100,TK_Complete,04/09/2021,04/09/2021,24/09/2021,24/09/2021,"SI--UBA2F61 FS,SP20UBA3H25 SS","SI--UBA2F61,SP20UBA3H25","SI--UBA2B98 FS,SI--UBA2B99 FS","SI--UBA2B98,SI--UBA2B99",57,57,59,59,13,13,13,13,28,,"HK1003 -Blackpoint D2 - Rev.0E DD30092021"
1-5303,SI20UBA2B-38,"BASIC DESIGN STEEL STRUCTURE 20UBA8110/20",5121,"HK1003-Rev.0E-3",TT_Task,"55902",-,-,-,100,TK_Complete,31/08/2021,31/08/2021,20/09/2021,20/09/2021,"SI--UBA2J60 FS","SI--UBA2J60","SI--UBA2D70 FS,SI--UBA2D78 FS","SI--UBA2D70,SI--UBA2D78",56,56,59,59,13,13,13,13,27,,"HK1003 -Blackpoint D2 - Rev.0E DD30092021"
1-5304,SI20UBA2B-39,"BASIC DESIGN STEEL STRUCTURE 01UBA9010/20",5121,"HK1003-Rev.0E-3",TT_Task,"55902",-,-,-,0,TK_NotStart,08/11/2021,,28/11/2021,,"SI20UBA2C-55 FS","SI20UBA2C-55","SI20UBA2C-60 FS","SI20UBA2C-60",66,,69,,15,,16,,37,392,"HK1003 -Blackpoint D2 - Rev.0E DD30092021"
1-5305,SI--HB-2-18,"BD - HRSG PLATFORMS SUBMISSION & APPROVAL",5121,"HK1003-Rev.0E-3",TT_Task,"55902",-,-,-,100,TK_Complete,16/07/2021,16/07/2021,13/09/2021,13/09/2021,"SI--HB-3C15 FS,SI-P221-565& FS,SI-P221-562& FS,SI-P221-563& FS,SI-P221-564& FS,SI--HA-2-102 FS","SI--HB-3C15,SI-P221-565&,SI-P221-562&,SI-P221-563&,SI-P221-564&,SI--HA-2-102","SI--HB-2-19 FS","SI--HB-2-19",49,49,58,58,11,11,13,13,22,,"HK1003 -Blackpoint D2 - Rev.0E DD30092021"
1-5306,SI--HB-2-19,"BD - CONSENT LETTER HRSG PLATFORMS",5121,"HK1003-Rev.0E-3",TT_Task,"55902",-,-,-,57,TK_Active,14/09/2021,14/09/2021,11/10/2021,,"SI--HB-2-18 FS","SI--HB-2-18","SI20HB-3C25 FF,SI20HB-3C91 FF","SI20HB-3C25,SI20HB-3C91",58,58,62,,13,13,14,,29,648,"HK1003 -Blackpoint D2 - Rev.0E DD30092021"
1-5307,SI20UBL2C-81,"BASIC DESIGN STEEL STRUCTURE 20UBL",5121,"HK1003-Rev.0E-3",TT_Task,"55902",-,-,-,0,TK_NotStart,07/10/2021,,28/10/2021,,"SI20UBL2C-55 FS,SI20UBX2-83 FS","SI20UBL2C-55,SI20UBX2-83","SI20UBL2C-60 FS","SI20UBL2C-60",61,,64,,14,,15,,32,600,"HK1003 -Blackpoint D2 - Rev.0E DD30092021"
1-5308,SI20UBN2-106,"BASIC BUILDING DESIGN INCL. 3D MODEL - PRELIMINARY 20UBN",5121,"HK1003-Rev.0E-3",TT_Task,"55902",-,-,-,0,TK_NotStart,06/10/2021,,26/10/2021,,"SI--UB-2-36 FS,SI--UB-2-35 FS,SI20XKA2-15 SS","SI--UB-2-36,SI--UB-2-35,SI20XKA2-15","SI20UBN2-107 FS,SI20UEX2-107 SS","SI20UBN2-107,SI20UEX2-107",61,,64,,14,,15,,32,552,"HK1003 -Blackpoint D2 - Rev.0E DD30092021"
1-5309,SI20UBN2-107,"DETAIL DESIGN CONCRETE STRUCTURE PRELIMINARY  20UBN",5121,"HK1003-Rev.0E-3",TT_Task,"55902",-,-,-,0,TK_NotStart,27/10/2021,,10/12/2021,,"SI20UBN2-106 FS","SI20UBN2-106","SI20UBN2-109 FS,SI20UBN2-25 FS,SI20UBN2-20 FF","SI20UBN2-109,SI20UBN2-25,SI20UBN2-20",64,,70,,15,,16,,36,952,"HK1003 -Blackpoint D2 - Rev.0E DD30092021"
1-5310,SI20UBN2-109,"BD - SUBMISSION & APPROVAL - DETAIL DESIGN CONCRETE 20UBN",5121,"HK1003-Rev.0E-3",TT_Task,"55902",-,-,-,0,TK_NotStart,11/12/2021,,08/02/2022,,"SI20UBN2-107 FS,SI20UBN2-25 SS,SI-P221-180& FS,SI-P221-180& SS","SI20UBN2-107,SI20UBN2-25,SI-P221-180&,SI-P221-180&","SI20UBN2-35 FS","SI20UBN2-35",71,,79,,16,,18,,42,952,"HK1003 -Blackpoint D2 - Rev.0E DD30092021"
1-5311,SI20UBN2-110,"BD - BA10 COMMENCEMENT OF WORK CONCRETE 20UBN",5121,"HK1003-Rev.0E-3",TT_FinMile,"55902",-,-,-,0,TK_NotStart,29/03/2022,,29/03/2022,,"SI20UBN2-35 FS","SI20UBN2-35","SI20UBN5-5.00 FS","SI20UBN5-5.00",86,,86,,20,,20,,54,1304,"HK1003 -Blackpoint D2 - Rev.0E DD30092021"
1-5312,SI20UBY2-65,"BASIC BUILDING DESIGN INCL. 3D MODEL- PRELIMINARY UBY02",5121,"HK1003-Rev.0E-3",TT_Task,"55902",-,-,-,100,TK_Complete,11/06/2021,11/06/2021,01/07/2021,01/07/2021,"SI--UE2-E38 FS,SI--UE2-E37 FS","SI--UE2-E38,SI--UE2-E37","SI20UBY2-66 FS","SI20UBY2-66",44,44,47,47,10,10,11,11,17,,"HK1003 -Blackpoint D2 - Rev.0E DD30092021"
1-5313,SI20UBY2-66,"DETAIL DESIGN CONCRETE STRUCTURE - PRELIMINARY UBY02",5121,"HK1003-Rev.0E-3",TT_Task,"55902",-,-,-,100,TK_Complete,02/07/2021,02/07/2021,15/08/2021,15/08/2021,"SI20UBY2-65 FS","SI20UBY2-65","SI20UBY2-45 FS,SI20UBY2-44 FF","SI20UBY2-45,SI20UBY2-44",47,47,54,54,11,11,12,12,20,,"HK1003 -Blackpoint D2 - Rev.0E DD30092021"
1-5314,SI20UBY2-67,"BD - SUBMISSION & APPROVAL - DETAIL DESIGN CONCRETE - UBY02",5121,"HK1003-Rev.0E-3",TT_Task,"55902",-,-,-,0,TK_NotStart,10/10/2021,,08/12/2021,,"SI20UBY2-45 FS,SI-P221-185& FS","SI20UBY2-45,SI-P221-185&","SI20UBY2-47 FS,SI20UBZ2-78 SS,SI20UBN2-104 SS,SI20UEX2-104 SS","SI20UBY2-47,SI20UBZ2-78,SI20UBN2-104,SI20UEX2-104",62,,70,,14,,16,,33,1048,"HK1003 -Blackpoint D2 - Rev.0E DD30092021"
1-5315,SI20UEX2-109,"BD - SUBMISSION & APPROVAL - DETAIL DESIGN CONCRETE 20UEX01",5121,"HK1003-Rev.0E-3",TT_Task,"55902",-,-,-,0,TK_NotStart,11/12/2021,,08/02/2022,,"SI20UEX2-40 SS,SI-P221-195& FS","SI20UEX2-40,SI-P221-195&","SI20UEX2-50 FS","SI20UEX2-50",71,,79,,16,,18,,42,552,"HK1003 -Blackpoint D2 - Rev.0E DD30092021"
1-5316,SI20UEX2D79,"BASIC DESIGN STEEL STRUCTURE 20UEX01",5121,"HK1003-Rev.0E-3",TT_Task,"55902",-,-,-,0,TK_NotStart,16/01/2022,,05/02/2022,,"SI20UEX2J60 FS","SI20UEX2J60","SI20UEX2D70 FS","SI20UEX2D70",76,,79,,17,,18,,46,552,"HK1003 -Blackpoint D2 - Rev.0E DD30092021"
1-5317,SI-P221-175&,"BD - SUBMISSION - DETAIL DESIGN CONCRETE - AMENDMENT 20UBX/20UBG03",5121,"HK1003-Rev.0E-3",TT_Mile,"55902",-,-,-,0,TK_NotStart,29/11/2021,,29/11/2021,,"SI-----1-05 FS","SI-----1-05","SI20UBX2-30 FS","SI20UBX2-30",69,,69,,16,,16,,40,1400,"HK1003 -Blackpoint D2 - Rev.0E DD30092021"
1-5318,SI20USX2-41,"BASIC BUILDING DESIGN INCL. 3D MODEL - PRELIMINARY 20USX",5121,"HK1003-Rev.0E-3",TT_Task,"55902",-,-,-,100,TK_Complete,31/08/2021,31/08/2021,20/09/2021,20/09/2021,"SI20QC-2-85 FS,SI20USX2-46 FS,SI--UHA2-70 SS","SI20QC-2-85,SI20USX2-46,SI--UHA2-70","SI20USX2-42 FS","SI20USX2-42",56,56,59,59,13,13,13,13,27,,"HK1003 -Blackpoint D2 - Rev.0E DD30092021"
1-5319,SI20USX2-42,"DETAIL DESIGN CONCRETE STRUCTURE - PRELIMINARY 20USX",5121,"HK1003-Rev.0E-3",TT_Task,"55902",-,-,-,20,TK_Active,21/09/2021,21/09/2021,04/11/2021,,"SI20USX2-41 FS","SI20USX2-41","SI20USX2-30 FS,SI20USX2-20 FF,SI20USX2-25 FS","SI20USX2-30,SI20USX2-20,SI20USX2-25",59,59,65,,13,13,15,,30,2392,"HK1003 -Blackpoint D2 - Rev.0E DD30092021"
1-5320,SI20USX2-43,"BD - SUBMISSION & APPROVAL - DETAIL DESIGN CONCRETE AMENDMENT 20USX",5121,"HK1003-Rev.0E-3",TT_Task,"55902",-,-,-,0,TK_NotStart,15/02/2022,,16/03/2022,,"SI20USX2-35 FS,SI20USX2-15 FS","SI20USX2-35,SI20USX2-15","SI20USX2-40 FS,SI20USX2-44 FS","SI20USX2-40,SI20USX2-44",80,,84,,18,,19,,50,2392,"HK1003 -Blackpoint D2 - Rev.0E DD30092021"
1-5321,SI20UHX2-41,"BASIC BUILDING DESIGN INCL. 3D MODEL - PRELIMINARY 20UHX",5121,"HK1003-Rev.0E-3",TT_Task,"55902",-,-,-,100,TK_Complete,25/07/2021,25/07/2021,14/08/2021,14/08/2021,"SI20QU-2-85 FS","SI20QU-2-85","SI20UHX2-42 FS","SI20UHX2-42",51,51,54,54,11,11,12,12,23,,"HK1003 -Blackpoint D2 - Rev.0E DD30092021"
1-5322,SI20UHX2-42,"DETAIL DESIGN CONCRETE STRUCTURE - PRELIMINARY 20UHX",5121,"HK1003-Rev.0E-3",TT_Task,"55902",-,-,-,100,TK_Complete,15/08/2021,15/08/2021,28/09/2021,28/09/2021,"SI20UHX2-41 FS","SI20UHX2-41","SI20UHX2-25 FS,SI20UHX2-20 FF","SI20UHX2-25,SI20UHX2-20",54,54,60,60,12,12,14,14,26,,"HK1003 -Blackpoint D2 - Rev.0E DD30092021"
1-5323,SI20UHX2-43,"BD - SUBMISSION & APPROVAL - DETAIL DESIGN CONCRETE - AMENDMENT 20UHX (if required)",5121,"HK1003-Rev.0E-3",TT_Task,"55902",-,-,-,0,TK_NotStart,20/01/2022,,18/02/2022,,"SI20UHX2-35 FS,SI20UHX2-15 FS","SI20UHX2-35,SI20UHX2-15","SI20UHX5-45 FS","SI20UHX5-45",76,,80,,17,,18,,46,3088,"HK1003 -Blackpoint D2 - Rev.0E DD30092021"
1-5324,SI20UHX2-44,"BD - BA10 COMMENCEMENT OF WORK CONCRETE 20UHX",5121,"HK1003-Rev.0E-3",TT_FinMile,"55902",-,-,-,0,TK_NotStart,26/01/2022,,26/01/2022,,"SI20UHX2-35 FS","SI20UHX2-35","SI20UHX5-10 FS","SI20UHX5-10",77,,77,,18,,18,,47,3112,"HK1003 -Blackpoint D2 - Rev.0E DD30092021"
1-5325,SI-P222-146&,"CHEMICAL WASTE WATER DISCHARGE LICENSE",5121,"HK1003-Rev.0E-3",TT_Task,"55902",-,-,-,0,TK_NotStart,13/01/2023,,13/03/2023,,"","","SI20--P6-75 FS","SI20--P6-75",127,,136,,29,,31,,88,0,"HK1003 -Blackpoint D2 - Rev.0E DD30092021"
1-5326,SI20PAA4-41,"TRANSPORT COOLING TOWER COARSE SCREEN TO PORT OF EXPORT 20PAA",5121,"HK1003-Rev.0E-3",TT_Task,"55902",-,-,-,0,TK_NotStart,29/06/2022,,05/07/2022,,"SI20PAA3-80 FS","SI20PAA3-80","SI20PAA4-25 FS","SI20PAA4-25",99,,100,,23,,23,,71,1536,"HK1003 -Blackpoint D2 - Rev.0E DD30092021"
1-5327,SI--2222-135,"SENDING / RECEIVING / REVIEWING OFFERS ERECTION CONTRACTOR (MECHANICAL)",5121,"HK1003-Rev.0E-3",TT_Task,"55902",-,-,-,100,TK_Complete,19/03/2021,19/03/2021,12/07/2021,12/07/2021,"SI--2222-60 FS,SI--2222-81 FF","SI--2222-60,SI--2222-81","SI--2222-86 FS,SI--2222-137 FS,SI-P222-164 SS","SI--2222-86,SI--2222-137,SI-P222-164",32,32,49,49,7,7,11,11,6,,"HK1003 -Blackpoint D2 - Rev.0E DD30092021"
1-5328,SI--2222-136,"SENDING / RECEIVING / REVIEWING OFFERS ERECTION (E and I&C)",5121,"HK1003-Rev.0E-3",TT_Task,"55902",-,-,-,100,TK_Complete,19/03/2021,19/03/2021,12/07/2021,12/07/2021,"SI--2222-63 FS,SI--2222-82 FF","SI--2222-63,SI--2222-82","SI--2222-87 FS,SI--2222-138 FS,SI-P222-164 SS","SI--2222-87,SI--2222-138,SI-P222-164",32,32,49,49,7,7,11,11,6,,"HK1003 -Blackpoint D2 - Rev.0E DD30092021"
1-5329,SI--2222-137,"REVISE RFQ DOCUMENTS / AUDIT / CHECK REVISED OFFERS  ERECTION CONTRACTOR (MECHANICAL)",5121,"HK1003-Rev.0E-3",TT_Task,"55902",-,-,-,100,TK_Complete,13/07/2021,13/07/2021,16/08/2021,16/08/2021,"SI--2222-135 FS","SI--2222-135","SI--2222-139 SS","SI--2222-139",49,49,54,54,11,11,12,12,21,,"HK1003 -Blackpoint D2 - Rev.0E DD30092021"
1-5330,SI--2222-138,"REVISE RFQ DOCUMENTS / AUDIT / CHECK REVISED OFFERS  ERECTION CONTRACTOR (E and I&C)",5121,"HK1003-Rev.0E-3",TT_Task,"55902",-,-,-,100,TK_Complete,13/07/2021,13/07/2021,16/08/2021,16/08/2021,"SI--2222-136 FS","SI--2222-136","SI--2222-140 SS","SI--2222-140",49,49,54,54,11,11,12,12,21,,"HK1003 -Blackpoint D2 - Rev.0E DD30092021"
1-5331,SI--2222-139,"CONTRACT NEGOTIATION / AWARD ERECTION CONTRACTOR (MECHANICAL)",5121,"HK1003-Rev.0E-3",TT_Task,"55902",-,-,-,91,TK_Active,03/08/2021,03/08/2021,05/10/2021,,"SI--2222-137 SS","SI--2222-137","SI--2222-86 FS","SI--2222-86",52,52,61,,12,12,14,,24,440,"HK1003 -Blackpoint D2 - Rev.0E DD30092021"
1-5332,SI--2222-140,"CONTRACT NEGOTIATION / AWARD  ERECTION CONTRACTOR (E and I&C)",5121,"HK1003-Rev.0E-3",TT_Task,"55902",-,-,-,50,TK_Active,03/08/2021,03/08/2021,26/11/2021,,"SI--2222-138 SS","SI--2222-138","SI--2222-87 FS","SI--2222-87",52,52,68,,12,12,16,,24,328,"HK1003 -Blackpoint D2 - Rev.0E DD30092021"
1-5333,SI20QJ-2-17,"BASIC DESIGN, SPECIFICATION CENTRAL GAS SUPPLY (H2,CO2) QJ_",5121,"HK1003-Rev.0E-3",TT_Task,"55902",-,-,-,100,TK_Complete,14/02/2021,14/02/2021,27/03/2021,27/03/2021,"SI-----1-05 FS","SI-----1-05","SI20QJ-2-86 FS","SI20QJ-2-86",28,28,34,34,6,6,7,7,4,,"HK1003 -Blackpoint D2 - Rev.0E DD30092021"
1-5334,SI20QJ-2-80,"QUOTATION STAGE CENTRAL GAS SUPPLY (H2,CO2) QJ_",5121,"HK1003-Rev.0E-3",TT_Task,"55902",-,-,-,100,TK_Complete,11/04/2021,11/04/2021,22/05/2021,22/05/2021,"SI20QJ-2-86 FS","SI20QJ-2-86","SI20QJ-2-85 FS","SI20QJ-2-85",36,36,42,42,8,8,9,9,8,,"HK1003 -Blackpoint D2 - Rev.0E DD30092021"
1-5335,SI20QJ-2-86,"PREPARATION RFQ CENTRAL GAS SUPPLY (H2,CO2) QJ_",5121,"HK1003-Rev.0E-3",TT_Task,"55902",-,-,-,100,TK_Complete,28/03/2021,28/03/2021,10/04/2021,10/04/2021,"SI20QJ-2-17 FS","SI20QJ-2-17","SI20QJ-2-80 FS","SI20QJ-2-80",34,34,36,36,7,7,8,8,7,,"HK1003 -Blackpoint D2 - Rev.0E DD30092021"
1-5336,SI20QJ-2-85,"CONTRACT INTO FORCE CENTRAL GAS SUPPLY (H2,CO2) QJ_",5121,"HK1003-Rev.0E-3",TT_Mile,"55902",-,-,-,100,TK_Complete,23/05/2021,23/05/2021,23/05/2021,23/05/2021,"SI20QJ-2-80 FS","SI20QJ-2-80","SI20QJ-3B25 FS,SI20UTG2-5 FS","SI20QJ-3B25,SI20UTG2-5",42,42,42,42,9,9,9,9,13,,"HK1003 -Blackpoint D2 - Rev.0E DD30092021"
1-5337,SI20BZK7-49,"10BBA05 - FEEDER 1: MV + CONTROL CABLE CONN. C STATION / D1 STATION TO BE  REMOVED FROM CABLE TRAY",5121,"HK1003-Rev.0E-3",TT_Task,"55902",-,-,-,0,TK_NotStart,24/01/2023,,20/02/2023,,"SI20TP-258& FS,SI20TPE3A7-20 FS,SI20TPE3A3-15 FS","SI20TP-258&,SI20TPE3A7-20,SI20TPE3A3-15","SI20BZK7-50 FS,SI20BB-9-15# SS","SI20BZK7-50,SI20BB-9-15#",129,,133,,30,,31,,89,64,"HK1003 -Blackpoint D2 - Rev.0E DD30092021"
1-5338,SI20BZK7-50,"10BBA05 - FEEDER 1: MV + CONTROL CABLE CONN. D1 STATION FROM 10BBA05 TO D2 STATION 90BBA01 INSTALLED ON CABLE TRAY",5121,"HK1003-Rev.0E-3",TT_Task,"55902",-,-,-,0,TK_NotStart,21/02/2023,,06/03/2023,,"SI20BZK7-49 FS,SI20TPE3A7-25 SS","SI20BZK7-49,SI20TPE3A7-25","SI20BBA7-51 FS,SI20BZK7-201 FS,SI20BBA8-46 FS","SI20BBA7-51,SI20BZK7-201,SI20BBA8-46",133,,135,,31,,31,,91,64,"HK1003 -Blackpoint D2 - Rev.0E DD30092021"
1-5339,SI20BBA7-51,"COMMISSIONING MV SWITCHGEAR FEEDER 1 FOR MV + PROTECTION LINK C STATION TO D2 STATION 90BBA01",5121,"HK1003-Rev.0E-3",TT_Task,"55902",-,-,-,0,TK_NotStart,07/03/2023,,21/03/2023,,"SI20BZK7-50 FS,SI20BUK8-50 FS,SI20UBA7C-25 SS,SI20BBA8-36 FS,SI20TPI10A8-30 FS,SI20TPE3A8-30 SS,SI20BBA8-40 FS,SI20BBA8-46 FS","SI20BZK7-50,SI20BUK8-50,SI20UBA7C-25,SI20BBA8-36,SI20TPI10A8-30,SI20TPE3A8-30,SI20BBA8-40,SI20BBA8-46","SI20BBA7-52 FF,SI20BB8-45 FS,SI20CHA8-26 FF","SI20BBA7-52,SI20BB8-45,SI20CHA8-26",135,,137,,31,,32,,92,64,"HK1003 -Blackpoint D2 - Rev.0E DD30092021"
1-5340,SI20BBA7-52,"ENERGISATION FEEDER 20BBA00GA002 IN 20UBA7710/20 VIA 90BBA01 & 90BBA03 IN 01UBA9010/20 FROM C STATION",5121,"HK1003-Rev.0E-3",TT_FinMile,"55902",-,-,-,0,TK_NotStart,28/03/2023,,28/03/2023,,"SI20BBA7-51 FF,SI20BB8-45 FS","SI20BBA7-51,SI20BB8-45","SI20BBA7-53 FS,SI20B--8-52 FS","SI20BBA7-53,SI20B--8-52",138,,138,,32,,32,,93,64,"HK1003 -Blackpoint D2 - Rev.0E DD30092021"
1-5341,SI20BBA7-53,"COMMISSIONING MV SWITCHGEAR FEEDER 1 FOR MV + PROTECTION LINK D2 STATION 90BBA02 IN 01UBA9010/20 TO D1 STATION 10BBA05",5121,"HK1003-Rev.0E-3",TT_Task,"55902",-,-,-,0,TK_NotStart,29/03/2023,,11/04/2023,,"SI20BBA7-52 FS","SI20BBA7-52","SI20BBA7-54 FS","SI20BBA7-54",138,,140,,32,,32,,93,640,"HK1003 -Blackpoint D2 - Rev.0E DD30092021"
1-5342,SI20BBA7-54,"ENERGISATION FEEDER 1 OF D1 STATION FROM 90BBA02 IN 01UBA9010/20",5121,"HK1003-Rev.0E-3",TT_FinMile,"55902",-,-,-,0,TK_NotStart,11/04/2023,,11/04/2023,,"SI20BBA7-53 FS","SI20BBA7-53","SI20MB-9-15 FS","SI20MB-9-15",140,,140,,32,,32,,94,640,"HK1003 -Blackpoint D2 - Rev.0E DD30092021"
1-5343,SI20BZK7-201,"10BBA06 - FEEDER 2: MV + CONTROL CABLE CONN. C STATION / D1 STATION TO BE REMOVED FROM CABLE TRAY",5121,"HK1003-Rev.0E-3",TT_Task,"55902",-,-,-,0,TK_NotStart,11/04/2023,,08/05/2023,,"SI20BFA8-36 FS,SI20BZK7-50 FS,SI20TPE2A7-20 SS,SI20B--8-50 FS","SI20BFA8-36,SI20BZK7-50,SI20TPE2A7-20,SI20B--8-50","SI20BZK7-202 FS,SI20BB-9-20# SS","SI20BZK7-202,SI20BB-9-20#",140,,144,,32,,33,,94,80,"HK1003 -Blackpoint D2 - Rev.0E DD30092021"
1-5344,SI20BZK7-202,"10BBA06 - FEEDER 2: MV + CONTROL CABLE CONN. D1 STATION FROM 10BBA06 TO D2 STATION 90BBB01 INSTALLED ON CABLE TRAY",5121,"HK1003-Rev.0E-3",TT_Task,"55902",-,-,-,0,TK_NotStart,09/05/2023,,22/05/2023,,"SI20BZK7-201 FS,SI20TPE2A7-25 SS","SI20BZK7-201,SI20TPE2A7-25","SI20BBA7-55 FS,SI20BBA8-47 FS","SI20BBA7-55,SI20BBA8-47",144,,146,,33,,34,,97,80,"HK1003 -Blackpoint D2 - Rev.0E DD30092021"
1-5345,SI20BBA7-55,"COMMISSIONING MV SWITCHGEAR FEEDER 2 FOR MV + PROTECTION LINK C STATION TO D2 STATION 90BBB01",5121,"HK1003-Rev.0E-3",TT_Task,"55902",-,-,-,0,TK_NotStart,23/05/2023,,06/06/2023,,"SI20BZK7-202 FS,SI20UBA7C-25 SS,SI20BBA8-41 FS,SI20TPI10A8-30 FS,SI20TPE2A8-30 SS","SI20BZK7-202,SI20UBA7C-25,SI20BBA8-41,SI20TPI10A8-30,SI20TPE2A8-30","SI20BBA7-56 FF","SI20BBA7-56",146,,148,,34,,34,,97,80,"HK1003 -Blackpoint D2 - Rev.0E DD30092021"
1-5346,SI20BBA7-56,"ENERGISATION FEEDER 20BBB00GA002 IN 20UBA7710/20 VIA 90BBB01 & 90BBB03 IN 01UBA9010/20 FROM C STATION",5121,"HK1003-Rev.0E-3",TT_FinMile,"55902",-,-,-,0,TK_NotStart,06/06/2023,,06/06/2023,,"SI20BBA7-55 FF","SI20BBA7-55","SI20BBA7-57 FS","SI20BBA7-57",148,,148,,34,,34,,98,80,"HK1003 -Blackpoint D2 - Rev.0E DD30092021"
1-5347,SI20BBA7-57,"COMMISSIONING MV SWITCHGEAR FEEDER 2 FOR MV + PROTECTION LINK D2 STATION 90BBB02 IN 01UBA9010/20 TO D1 STATION 10BBA06",5121,"HK1003-Rev.0E-3",TT_Task,"55902",-,-,-,0,TK_NotStart,07/06/2023,,20/06/2023,,"SI20BBA7-56 FS,SI20BBA8-47 FS","SI20BBA7-56,SI20BBA8-47","SI20BBA7-58 FS","SI20BBA7-58",148,,150,,34,,35,,98,80,"HK1003 -Blackpoint D2 - Rev.0E DD30092021"
1-5348,SI20BBA7-58,"ENERGISATION FEEDER 2 OF D1 STATION FROM 90BBB02 IN 01UBA9010/20",5121,"HK1003-Rev.0E-3",TT_FinMile,"55902",-,-,-,0,TK_NotStart,20/06/2023,,20/06/2023,,"SI20BBA7-57 FS","SI20BBA7-57","SI20BB-9-20# FF,SI20MB-9-15 FS","SI20BB-9-20#,SI20MB-9-15",150,,150,,35,,35,,98,80,"HK1003 -Blackpoint D2 - Rev.0E DD30092021"
1-5349,SI20SMM3-81,"DETAIL AND FABRICATION DESIGN CRANE 20SMM03 FOR 20UMC",5121,"HK1003-Rev.0E-3",TT_Task,"55902",-,-,-,95,TK_Active,08/08/2021,08/08/2021,02/10/2021,,"SI--SMM2-91 FS,SI--UMC2B80 FF","SI--SMM2-91,SI--UMC2B80","SI20SMM3-82 FS","SI20SMM3-82",53,53,61,,12,12,14,,25,128,"HK1003 -Blackpoint D2 - Rev.0E DD30092021"
1-5350,SI--SMM2-90,"CONTRACT INTO FORCE CRANES 20SMM03 FOR 20UMC",5121,"HK1003-Rev.0E-3",TT_Mile,"55902",-,-,-,100,TK_Complete,27/04/2021,27/04/2021,27/04/2021,27/04/2021,"SI--SMM2-89 FS,SI--SMM2-85 FS","SI--SMM2-89,SI--SMM2-85","SI--SMM2-91 FS,SI20SMM3-82 FS,SI--SMM2-92 FS","SI--SMM2-91,SI20SMM3-82,SI--SMM2-92",38,38,38,38,8,8,8,8,10,,"HK1003 -Blackpoint D2 - Rev.0E DD30092021"
1-5351,SI--SMM2-88,"CONTRACT REVIEW / PREP. RFQ CRANE 20SMM03 FOR 20UMC",5121,"HK1003-Rev.0E-3",TT_Task,"55902",-,-,-,100,TK_Complete,30/03/2021,30/03/2021,12/04/2021,12/04/2021,"SI--SMM2-85 FS","SI--SMM2-85","SI--SMM2-89 FS","SI--SMM2-89",34,34,36,36,8,8,8,8,7,,"HK1003 -Blackpoint D2 - Rev.0E DD30092021"
1-5352,SI20SMM3-82,"FABRICATION DESIGN/ MANUFACTURING / SHOP TEST / TRANSPORT CRANE 20SMM03 FOR 20UMC",5121,"HK1003-Rev.0E-3",TT_Task,"55902",-,-,-,0,TK_NotStart,03/10/2021,,12/01/2022,,"SI20SMM3-81 FS,SI--SMM2-90 FS","SI20SMM3-81,SI--SMM2-90","SI20SMM3-70 FS","SI20SMM3-70",61,,75,,14,,17,,31,128,"HK1003 -Blackpoint D2 - Rev.0E DD30092021"
1-5353,SI--SMM2-89,"QUOTATION STAGE CRANES 20SMM03 FOR 20UMC",5121,"HK1003-Rev.0E-3",TT_Task,"55902",-,-,-,100,TK_Complete,13/04/2021,13/04/2021,26/04/2021,26/04/2021,"SI--SMM2-88 FS","SI--SMM2-88","SI--SMM2-90 FS","SI--SMM2-90",36,36,38,38,8,8,8,8,8,,"HK1003 -Blackpoint D2 - Rev.0E DD30092021"
1-5354,SI--SMM2-91,"(DF) MS3 INPUT FOR CRANES 20SMM03 FOR 20UMC",5121,"HK1003-Rev.0E-3",TT_FinMile,"55902",-,-,-,100,TK_Complete,10/05/2021,10/05/2021,10/05/2021,10/05/2021,"SI--SMM2-90 FS","SI--SMM2-90","SI20SMM3-81 FS,SI--UMC2B92 FS","SI20SMM3-81,SI--UMC2B92",40,40,40,40,9,9,9,9,12,,"HK1003 -Blackpoint D2 - Rev.0E DD30092021"
1-5355,SI--SMM2-92,"(DF) INPUT FOR VEL CRANES 20SMM03 FOR 20UMC",5121,"HK1003-Rev.0E-3",TT_FinMile,"55902",-,-,-,100,TK_Complete,24/05/2021,24/05/2021,24/05/2021,24/05/2021,"SI--SMM2-90 FS","SI--SMM2-90","SI--B--2A55 FS,SP--B--2-61 FS","SI--B--2A55,SP--B--2-61",42,42,42,42,9,9,9,9,14,,"HK1003 -Blackpoint D2 - Rev.0E DD30092021"
1-5356,SI20MAN6H16,"INSULATION PIPES / VALVES MAN",5121,"HK1003-Rev.0E-3",TT_Task,"55902",-,-,-,0,TK_NotStart,18/02/2023,,10/03/2023,,"SI20MAN6H15 FS","SI20MAN6H15","SI20MAN7H15 FS","SI20MAN7H15",133,,135,,31,,31,,91,112,"HK1003 -Blackpoint D2 - Rev.0E DD30092021"
1-5357,SI20MAV6H16,"INSULATION PIPES / VALVES MAV",5121,"HK1003-Rev.0E-3",TT_Task,"55902",-,-,-,0,TK_NotStart,04/12/2022,,31/12/2022,,"SI20MAV6H15 FS","SI20MAV6H15","SI20MAV7H15 FS","SI20MAV7H15",122,,126,,28,,29,,86,776,"HK1003 -Blackpoint D2 - Rev.0E DD30092021"
1-5358,SI20MAX6H17,"INSULATION PIPES / VALVES MAX",5121,"HK1003-Rev.0E-3",TT_Task,"55902",-,-,-,0,TK_NotStart,25/02/2023,,17/03/2023,,"SI20MAX6H15 FS","SI20MAX6H15","SI20MAX7H15 FS","SI20MAX7H15",134,,136,,31,,31,,91,168,"HK1003 -Blackpoint D2 - Rev.0E DD30092021"
1-5359,SI20MB-6A16,"INSULATION PIPES / VALVES 20MB (BOP)",5121,"HK1003-Rev.0E-3",TT_Task,"55902",-,-,-,0,TK_NotStart,07/01/2023,,03/02/2023,,"SI20MB-6A15 FS","SI20MB-6A15","SI20MB-7H15 FS","SI20MB-7H15",127,,130,,29,,30,,88,616,"HK1003 -Blackpoint D2 - Rev.0E DD30092021"
1-5360,SI20MBA6A16,"INSULATION PIPES / VALVES 20MBA",5121,"HK1003-Rev.0E-3",TT_Task,"55902",-,-,-,0,TK_NotStart,07/01/2023,,10/02/2023,,"SI20MBA6A15 FS","SI20MBA6A15","SI20MB-7J15 FS","SI20MB-7J15",127,,131,,29,,30,,88,504,"HK1003 -Blackpoint D2 - Rev.0E DD30092021"
1-5361,SI20LCW6H16,"INSULATION PIPES / VALVES 20LCW",5121,"HK1003-Rev.0E-3",TT_Task,"55902",-,-,-,0,TK_NotStart,19/01/2023,,15/02/2023,,"SI20LCW6H15 FS","SI20LCW6H15","SI20LCW7H15 FS","SI20LCW7H15",128,,132,,30,,30,,88,184,"HK1003 -Blackpoint D2 - Rev.0E DD30092021"
1-5362,SI20LDK6A16,"INSULATION PIPES / VALVES 20LDK",5121,"HK1003-Rev.0E-3",TT_Task,"55902",-,-,-,0,TK_NotStart,29/12/2022,,01/02/2023,,"SI20LDK6A15 FS","SI20LDK6A15","SI20LDK7H16 FS","SI20LDK7H16",125,,130,,29,,30,,88,296,"HK1003 -Blackpoint D2 - Rev.0E DD30092021"
1-5363,SI20EKG6I16,"INSULATION PIPES 20EKG",5121,"HK1003-Rev.0E-3",TT_Task,"55902",-,-,-,0,TK_NotStart,12/02/2023,,04/03/2023,,"SI20EKG6H15 FS,SI20EKT6I15 FF","SI20EKG6H15,SI20EKT6I15","SI20EK-7H15 FF,SI20EK-7I15 FF","SI20EK-7H15,SI20EK-7I15",132,,135,,30,,31,,90,520,"HK1003 -Blackpoint D2 - Rev.0E DD30092021"
1-5364,SI20PAH6H16,"INSULATION PIPES / VALVES 20PAH",5121,"HK1003-Rev.0E-3",TT_Task,"55902",-,-,-,0,TK_NotStart,17/01/2023,,13/02/2023,,"SI20PAH6H15 FS","SI20PAH6H15","SI20PAH7H15 FS","SI20PAH7H15",128,,132,,29,,30,,88,464,"HK1003 -Blackpoint D2 - Rev.0E DD30092021"
1-5365,SI20PAR6A16,"INSULATION PIPES 20PAR MAKE UP WATER PIPES FOR COOLING TOWER",5121,"HK1003-Rev.0E-3",TT_Task,"55902",-,-,-,0,TK_NotStart,05/08/2022,,18/08/2022,,"SI20PAR6A15 FS","SI20PAR6A15","SI20PAR7A16 FS","SI20PAR7A16",104,,106,,24,,24,,76,1904,"HK1003 -Blackpoint D2 - Rev.0E DD30092021"
1-5366,SI20PCB6H16,"INSULATION PIPES / VALVES SERVICE COOL.WATER 20PCB",5121,"HK1003-Rev.0E-3",TT_Task,"55902",-,-,-,0,TK_NotStart,03/12/2022,,30/12/2022,,"SI20PCB6H15 FS","SI20PCB6H15","SI20PCB7H15 FS","SI20PCB7H15",122,,125,,28,,29,,86,824,"HK1003 -Blackpoint D2 - Rev.0E DD30092021"
1-5367,SI20PUR2J87,"CP DESIGN & DRAWINGS SUBSTRUCTURE-20URA/URD",5121,"HK1003-Rev.0E-3",TT_Task,"55902",-,-,-,100,TK_Complete,11/06/2021,11/06/2021,25/07/2021,25/07/2021,"SI20PUR2J86 FS,SI--5552-85 FS,SI20URA2B03 FS","SI20PUR2J86,SI--5552-85,SI20URA2B03","SI--URA2-84 FS","SI--URA2-84",44,44,51,51,10,10,11,11,17,,"HK1003 -Blackpoint D2 - Rev.0E DD30092021"
1-5368,SI20PUR2J86,"CONCEPT REVIEW BY CLP / NEGOTIATION / AWARD CATHODIC PROTECTION 20URA xx",5121,"HK1003-Rev.0E-3",TT_Task,"55902",-,-,-,100,TK_Complete,02/04/2021,02/04/2021,11/05/2021,11/05/2021,"SI-----1-05 FS","SI-----1-05","SI20PUR2J87 FS,SI--5552-85 FS","SI20PUR2J87,SI--5552-85",34,34,40,40,8,8,9,9,7,,"HK1003 -Blackpoint D2 - Rev.0E DD30092021"
1-5369,SI20PUR2J88,"COORDINATION ATKINS - CPT / INCL. EMBEDDED PARTS - SUPERSTRUCTURE 20URA/URD",5121,"HK1003-Rev.0E-3",TT_Task,"55902",-,-,-,0,TK_NotStart,22/10/2021,,21/11/2021,,"SI--URA2-94 FS,SI20PUR2J91 FS","SI--URA2-94,SI20PUR2J91","SI--URA2-98 FF","SI--URA2-98",63,,68,,14,,15,,35,392,"HK1003 -Blackpoint D2 - Rev.0E DD30092021"
1-5370,SI20PUR2J89,"CP DESIGN & DRAWINGS SUPERSTRUCTURE-20URA/URD",5121,"HK1003-Rev.0E-3",TT_Task,"55902",-,-,-,100,TK_Complete,03/07/2021,03/07/2021,24/07/2021,24/07/2021,"SI20URA2B04 FS","SI20URA2B04","SI20PUR2J91 FS,SI--URA2-101 FS","SI20PUR2J91,SI--URA2-101",48,48,51,51,11,11,11,11,20,,"HK1003 -Blackpoint D2 - Rev.0E DD30092021"
1-5371,SI20PUR2J91,"CLIENT REVIEW DETAIL DESIGN SUPERSTRUCTURE AND CATHODIC PROTECTION-20URA/URD",5121,"HK1003-Rev.0E-3",TT_Task,"55902",-,-,-,100,TK_Complete,25/07/2021,25/07/2021,18/08/2021,18/08/2021,"SI20PUR2J89 FS,SI--URA2-102 FF","SI20PUR2J89,SI--URA2-102","SI20PUR2J88 FS","SI20PUR2J88",51,51,54,54,11,11,12,12,23,,"HK1003 -Blackpoint D2 - Rev.0E DD30092021"
1-5372,SI20PUR2J92,"CLIENT - REVIEW - CONCRETE SUPERSTRUCTURE CATHODIC PROTECTION 20URA-To be used/cancel xx",5121,"HK1003-Rev.0E-3",TT_Task,"55902",-,-,-,100,TK_Complete,30/06/2021,30/06/2021,24/07/2021,24/07/2021,"","","","",47,47,51,51,11,11,11,11,19,,"HK1003 -Blackpoint D2 - Rev.0E DD30092021"
1-5373,SI20PUR2J93,"PROCUREMENT AND SHIPPING CATHODIC PROTECTION SUBSTRUCTURE-20URA/URD",5121,"HK1003-Rev.0E-3",TT_Task,"55902",-,-,-,98,TK_Active,01/08/2021,01/08/2021,30/09/2021,,"SI--URA2-92 FS","SI--URA2-92","SI20URA5-10 FS,SI20URA5-05 FF","SI20URA5-10,SI20URA5-05",52,52,60,,12,12,14,,24,1352,"HK1003 -Blackpoint D2 - Rev.0E DD30092021"
1-5374,SI20PUR2J94,"PROCUREMENT AND SHIPPING CATHODIC PROTECTION SUPERSTRUCTURE-20URA/URD",5121,"HK1003-Rev.0E-3",TT_Task,"55902",-,-,-,54,TK_Active,15/06/2021,15/06/2021,31/12/2021,,"SI--URA2-70 SS,SI--URA2-98 FF","SI--URA2-70,SI--URA2-98","SI--URA2-91 FF","SI--URA2-91",45,45,73,,10,10,17,,17,72,"HK1003 -Blackpoint D2 - Rev.0E DD30092021"
1-5375,SI---1P2H528,"PIPE SUPPORTS DOCUMENTATION OFF RACK LOT4",5121,"HK1003-Rev.0E-3",TT_Task,"55902",-,-,-,100,TK_Complete,06/07/2021,06/07/2021,16/08/2021,16/08/2021,"SI---1P2A512 FS,SI---3P2A10 FF,SI---2P2A10 FF,SI---1P2A10 FF","SI---1P2A512,SI---3P2A10,SI---2P2A10,SI---1P2A10","SI20---3B44 FS,SI20-1P340 FS,SI20-1P343 FS,SI20---3B94 FS,SI20---3M07 FS,SI20---3M11 FS,SI-P2I-1 FS","SI20---3B44,SI20-1P340,SI20-1P343,SI20---3B94,SI20---3M07,SI20---3M11,SI-P2I-1",48,48,54,54,11,11,12,12,21,,"HK1003 -Blackpoint D2 - Rev.0E DD30092021"
1-5376,SI---1P2A518,"PIPE SUPPORTS DOCUMENTATION OFF RACK LOT6",5121,"HK1003-Rev.0E-3",TT_Task,"55902",-,-,-,61,TK_Active,31/08/2021,31/08/2021,18/10/2021,,"SI---1P2A526 FS,SI---1P2A517 FS","SI---1P2A526,SI---1P2A517","SI20---3B95 FS,SI-P2I-1 SS","SI20---3B95,SI-P2I-1",56,56,63,,13,13,14,,27,1288,"HK1003 -Blackpoint D2 - Rev.0E DD30092021"
1-5377,SI---1P2H529,"FABRICATION ISOMETRICS OFF RACK LOT 7",5121,"HK1003-Rev.0E-3",TT_Task,"55902",-,-,-,100,TK_Complete,21/07/2021,21/07/2021,30/08/2021,30/08/2021,"SI---1P2A515 FS,SI---3P2A10 FF,SI---2P2A10 FF,SI---1P2A10 FF","SI---1P2A515,SI---3P2A10,SI---2P2A10,SI---1P2A10","SI20---3B96 FS,SI-P2I-1 FS,SI20---3B97 FS","SI20---3B96,SI-P2I-1,SI20---3B97",50,50,56,56,11,11,13,13,22,,"HK1003 -Blackpoint D2 - Rev.0E DD30092021"
1-5378,SI---1P2A517,"PIPE SUPPORTS DOCUMENTATION OFF RACK LOT7",5121,"HK1003-Rev.0E-3",TT_Task,"55902",-,-,-,100,TK_Complete,21/07/2021,21/07/2021,30/08/2021,30/08/2021,"SI---1P2A515 FS,SI---3P2A10 FF,SI---2P2A10 FF,SI---1P2A10 FF","SI---1P2A515,SI---3P2A10,SI---2P2A10,SI---1P2A10","SI---1P2A518 FS,SI-P2I-1 FS","SI---1P2A518,SI-P2I-1",50,50,56,56,11,11,13,13,22,,"HK1003 -Blackpoint D2 - Rev.0E DD30092021"
1-5379,SI---1P2A515,"DESIGN PHASE PIPING GRP & PLASTIC MATERIAL LOT7",5121,"HK1003-Rev.0E-3",TT_Task,"55902",-,-,-,100,TK_Complete,04/06/2021,04/06/2021,20/07/2021,20/07/2021,"SI---1P2A537 FS,SI---1P2A536 FS","SI---1P2A537,SI---1P2A536","SI---1P2A517 FS,SI---1P2H529 FS","SI---1P2A517,SI---1P2H529",43,43,50,50,10,10,11,11,16,,"HK1003 -Blackpoint D2 - Rev.0E DD30092021"
1-5380,SI---1P2H530,"FABRICATION ISOMETRICS OFF RACK LOT4",5121,"HK1003-Rev.0E-3",TT_Task,"55902",-,-,-,100,TK_Complete,06/07/2021,06/07/2021,16/08/2021,16/08/2021,"SI---1P2A512 FS,SI---3P2A10 FF,SI---2P2A10 FF,SI---1P2A10 FF","SI---1P2A512,SI---3P2A10,SI---2P2A10,SI---1P2A10","SI20---3B44 FS,SI20-1P340 FS,SI20-1P343 FS,SI20---3B94 FS,SI20---3M07 FS,SI20---2M23 FS,SI20---3M11 FS,SI-P2I-1 FS","SI20---3B44,SI20-1P340,SI20-1P343,SI20---3B94,SI20---3M07,SI20---2M23,SI20---3M11,SI-P2I-1",48,48,54,54,11,11,12,12,21,,"HK1003 -Blackpoint D2 - Rev.0E DD30092021"
1-5381,SI---1P2A513,"(M2) LOT4-Gr.1(LAB,LBx,PAB10, PAB20)(Final P&ID's)",5121,"HK1003-Rev.0E-3",TT_FinMile,"55902",-,-,-,100,TK_Complete,22/04/2021,22/04/2021,22/04/2021,22/04/2021,"SI--L--2-35 FS,SI--P--2-35 FS,SI-----2E87 FS","SI--L--2-35,SI--P--2-35,SI-----2E87","SI---1P2A531 FS,SI---1P2A528 FS,SI---1P2A512 FS","SI---1P2A531,SI---1P2A528,SI---1P2A512",37,37,37,37,8,8,8,8,9,,"HK1003 -Blackpoint D2 - Rev.0E DD30092021"
1-5382,SI---1P2A512,"DESIGN PHASE  PIPING LARGE BORE & SUPPORTS LOT4",5121,"HK1003-Rev.0E-3",TT_Task,"55902",-,-,-,100,TK_Complete,21/05/2021,21/05/2021,05/07/2021,05/07/2021,"SI---1P2A529 FS,SI---1P2A528 FF,SI---1P2A513 FS","SI---1P2A529,SI---1P2A528,SI---1P2A513","SI---1P2H528 FS,SI---1P2H530 FS","SI---1P2H528,SI---1P2H530",41,41,48,48,9,9,11,11,13,,"HK1003 -Blackpoint D2 - Rev.0E DD30092021"
1-5383,SI---1P2H536,"PIPE SUPPORTS DOCUMENTATION OFF RACK LOT5",5121,"HK1003-Rev.0E-3",TT_Task,"55902",-,-,-,100,TK_Complete,28/07/2021,28/07/2021,14/09/2021,14/09/2021,"SI---1P2A521 FS,SI---5P2A10 FF,SI---4P2A10 FF","SI---1P2A521,SI---5P2A10,SI---4P2A10","SI20---3B94 FS","SI20---3B94",51,51,58,58,12,12,13,13,23,,"HK1003 -Blackpoint D2 - Rev.0E DD30092021"
1-5384,SI---1P2A526,"DESIGN PHASE PIPING SMALL BORE & SUPPORTS LOT 6",5121,"HK1003-Rev.0E-3",TT_Task,"55902",-,-,-,100,TK_Complete,11/06/2021,11/06/2021,27/07/2021,27/07/2021,"SI---1P2A535 FS,SI---1P2A534 FS,SI---1P2A533 FS,SI---1P2A532 FS,SI---1P2A531 FS","SI---1P2A535,SI---1P2A534,SI---1P2A533,SI---1P2A532,SI---1P2A531","SI---1P2A518 FS,SI---1P2H537 FS","SI---1P2A518,SI---1P2H537",44,44,51,51,10,10,12,12,17,,"HK1003 -Blackpoint D2 - Rev.0E DD30092021"
1-5385,SI---1P2H537,"FABRICATION ISOMETRICS OFF RACK LOT 6",5121,"HK1003-Rev.0E-3",TT_Task,"55902",-,-,-,81,TK_Active,28/07/2021,28/07/2021,14/10/2021,,"SI---1P2A526 FS,SI---5P2A10 FF,SI---4P2A10 FF","SI---1P2A526,SI---5P2A10,SI---4P2A10","SI20---3B95 FS,SI20---3B18 FS","SI20---3B95,SI20---3B18",51,51,62,,12,12,14,,23,1320,"HK1003 -Blackpoint D2 - Rev.0E DD30092021"
1-5386,SI---1P2A525,"PIPE SUPPORTS DOCUMENTATION ON RACK LOT1",5121,"HK1003-Rev.0E-3",TT_Task,"55902",-,-,-,100,TK_Complete,20/07/2021,20/07/2021,08/09/2021,08/09/2021,"SI---1P2A557 FS,SI---5P2A10 FF,SI---4P2A10 FF","SI---1P2A557,SI---5P2A10,SI---4P2A10","SI20-1P340 FS","SI20-1P340",50,50,57,57,11,11,13,13,22,,"HK1003 -Blackpoint D2 - Rev.0E DD30092021"
1-5387,SI---1P2A523,"PIPE SUPPORTS DOCUMENTATION ON RACK LOT2",5121,"HK1003-Rev.0E-3",TT_Task,"55902",-,-,-,100,TK_Complete,06/08/2021,06/08/2021,01/09/2021,01/09/2021,"SI---1P2A558 FS","SI---1P2A558","SI20---3B44 FS","SI20---3B44",52,52,56,56,12,12,13,13,25,,"HK1003 -Blackpoint D2 - Rev.0E DD30092021"
1-5388,SI---1P2H538,"FABRICATION ISOMETRICS OFF RACK LOT 5",5121,"HK1003-Rev.0E-3",TT_Task,"55902",-,-,-,100,TK_Complete,28/07/2021,28/07/2021,14/09/2021,14/09/2021,"SI---1P2A521 FS,SI---5P2A10 FF,SI---4P2A10 FF","SI---1P2A521,SI---5P2A10,SI---4P2A10","SI20---3B94 FS,SI20---3B19 FS","SI20---3B94,SI20---3B19",51,51,58,58,12,12,13,13,23,,"HK1003 -Blackpoint D2 - Rev.0E DD30092021"
1-5389,SI---1P2A520,"(M2) LOT5-GR.4(GHD,GKB,GMx,QFB,SCB,SGA,MAA/B/C)(FInal Data for Piping design needed)",5121,"HK1003-Rev.0E-3",TT_FinMile,"55902",-,-,-,100,TK_Complete,03/06/2021,03/06/2021,03/06/2021,03/06/2021,"SI---1P2A529 FS,SI--G--2-35 FS,SI20TPF2A2-5 FS,SI20TPF1C2-5 FS,SI20TPF1B2-5 FS,SI20TPF1A2-5 FS,SI20TPC9A2-5 FS,SI20TPC8A2-5 FS,SI20TPC7A2-5 FS,SI20TPC6A2-5 FS,SI20TPC5A2-5 FS,SI20TPC4A2-5 FS,SI20TPC3A2-5 FS,SI20TPC2A2-5 FS,SI20TPC1A2-5 FS,SI20TPC10A2-5 FS","SI---1P2A529,SI--G--2-35,SI20TPF2A2-5,SI20TPF1C2-5,SI20TPF1B2-5,SI20TPF1A2-5,SI20TPC9A2-5,SI20TPC8A2-5,SI20TPC7A2-5,SI20TPC6A2-5,SI20TPC5A2-5,SI20TPC4A2-5,SI20TPC3A2-5,SI20TPC2A2-5,SI20TPC1A2-5,SI20TPC10A2-5","SI---1P2A530 FS,SI---1P2A521 FS,SI---1P2A521 FF,SI-P222-169 FS,SI-P222-170 FS","SI---1P2A530,SI---1P2A521,SI---1P2A521,SI-P222-169,SI-P222-170",43,43,43,43,10,10,10,10,15,,"HK1003 -Blackpoint D2 - Rev.0E DD30092021"
1-5390,SI---1P2A521,"DESIGN PHASE PIPING LARGE BORE & SUPPORTS LOT 5",5121,"HK1003-Rev.0E-3",TT_Task,"55902",-,-,-,100,TK_Complete,11/06/2021,11/06/2021,27/07/2021,27/07/2021,"SI---1P2A530 FS,SI---1P2A530 FF,SI---1P2A520 FS,SI---1P2A520 FF","SI---1P2A530,SI---1P2A530,SI---1P2A520,SI---1P2A520","SI---1P2H538 FS,SI---1P2H536 FS","SI---1P2H538,SI---1P2H536",44,44,51,51,10,10,12,12,17,,"HK1003 -Blackpoint D2 - Rev.0E DD30092021"
1-5391,SI20UZx2-48,"REVIEW OF DETAIL DESIGN TEMPORARY BUILDINGS (by Siemens) 20UZx",5121,"HK1003-Rev.0E-3",TT_Task,"55902",-,-,-,100,TK_Complete,02/06/2021,02/06/2021,04/06/2021,04/06/2021,"SI20UZx2-43 FS","SI20UZx2-43","SI20UZx5-46 FS","SI20UZx5-46",43,43,43,43,10,10,10,10,15,,"HK1003 -Blackpoint D2 - Rev.0E DD30092021"
1-5392,SI20UZx5-51,"CONSTRUCTION INDUCTION-EHS / FIRST AID STATION / GATE HOUSE 20UZx",5121,"HK1003-Rev.0E-3",TT_Task,"55902",-,-,-,100,TK_Complete,26/07/2021,26/07/2021,20/08/2021,20/08/2021,"SI20UZx5-46 SS,SI--3335-67 FS","SI20UZx5-46,SI--3335-67","SI20UZx5-49 FS,SI20UZx5-47# FF,SI20UZx5-47# SS","SI20UZx5-49,SI20UZx5-47#,SI20UZx5-47#",51,51,54,54,11,11,12,12,23,,"HK1003 -Blackpoint D2 - Rev.0E DD30092021"
1-5393,SI20UZx5-52,"CONSTRUCTION DAY ACCOMODATION BUILDINGS DA-1/DA-2/DA-3/DA-4/DA-5 20UZx",5121,"HK1003-Rev.0E-3",TT_Task,"55902",-,-,-,33,TK_Active,01/09/2021,01/09/2021,28/11/2021,,"SI20UZx5-46 FF,SI--3335-69 FS","SI20UZx5-46,SI--3335-69","SI20UZx5-49 FS,SI20UZx5-47# FF,SI20UZx5-47# SS","SI20UZx5-49,SI20UZx5-47#,SI20UZx5-47#",56,56,69,,13,13,16,,28,1624,"HK1003 -Blackpoint D2 - Rev.0E DD30092021"
1-5394,SI20UZx5-53,"CONSTRUCTION SANITARY CONTAINERS AT CONTRACTORS VILLAGE 20UZx",5121,"HK1003-Rev.0E-3",TT_Task,"55902",-,-,-,54,TK_Active,10/09/2021,10/09/2021,16/10/2021,,"SI20UZx5-46 FS","SI20UZx5-46","SI20UZx5-49 FS,SI20UZx5-47# FF,SI20UZx5-47# SS","SI20UZx5-49,SI20UZx5-47#,SI20UZx5-47#",57,57,63,,13,13,14,,29,1968,"HK1003 -Blackpoint D2 - Rev.0E DD30092021"
1-5395,SI--3335-66,"INSTALLATION OF POTABLE WATER AND WASTE WATER SYSTEM (TP availability needed?)",5121,"HK1003-Rev.0E-3",TT_Task,"55902",-,-,-,100,TK_Complete,01/07/2021,01/07/2021,27/08/2021,27/08/2021,"SI-----5-20 FS,SI--5552-105 FS,SI--5552-102 FS","SI-----5-20,SI--5552-105,SI--5552-102","SI--PEM6-20& FS,SI--3335-63# FF,SI--3335-63# SS","SI--PEM6-20&,SI--3335-63#,SI--3335-63#",47,47,55,55,11,11,13,13,20,,"HK1003 -Blackpoint D2 - Rev.0E DD30092021"
1-5396,SI--3335-67,"PREPARATION OF AREA  AT SIEMENS INDUCTION-EHS / FIRST AID STATION / GATE HOUSE",5121,"HK1003-Rev.0E-3",TT_Task,"55902",-,-,-,100,TK_Complete,01/07/2021,01/07/2021,22/07/2021,22/07/2021,"SI-----5-20 FS","SI-----5-20","SI--PEM6-20& FS,SI20UZx5-51 FS,SI--3335-63# FF,SI--3335-63# SS","SI--PEM6-20&,SI20UZx5-51,SI--3335-63#,SI--3335-63#",47,47,50,50,11,11,11,11,20,,"HK1003 -Blackpoint D2 - Rev.0E DD30092021"
1-5397,SI--3335-68,"PREPARATION OF LAYDOWN AREAS AND SIEMENS STORAGE",5121,"HK1003-Rev.0E-3",TT_Task,"55902",-,-,-,100,TK_Complete,01/07/2021,01/07/2021,16/08/2021,16/08/2021,"SI-----5-20 FS","SI-----5-20","SI--3335-70 FS,SI--3335-71 FS,SI--PEM6-20& FS,SI--3335-63# FF,SI--3335-63# SS","SI--3335-70,SI--3335-71,SI--PEM6-20&,SI--3335-63#,SI--3335-63#",47,47,54,54,11,11,12,12,20,,"HK1003 -Blackpoint D2 - Rev.0E DD30092021"
1-5398,SI--3335-69,"PREPARATION OF CONTRACTORS VILLAGE AREA",5121,"HK1003-Rev.0E-3",TT_Task,"55902",-,-,-,100,TK_Complete,01/07/2021,01/07/2021,27/08/2021,27/08/2021,"SI-----5-20 FS","SI-----5-20","SI--PEM6-20& FS,SI20UZx5-52 FS,SI--3335-63# FF,SI--3335-63# SS","SI--PEM6-20&,SI20UZx5-52,SI--3335-63#,SI--3335-63#",47,47,55,55,11,11,13,13,20,,"HK1003 -Blackpoint D2 - Rev.0E DD30092021"
1-5399,SI--3335-70,"INSTALLATION OF TEMPORARY ROADS AT LAYDOWN AREA",5121,"HK1003-Rev.0E-3",TT_Task,"55902",-,-,-,0,TK_NotStart,25/10/2021,,12/11/2021,,"SI--3335-68 FS","SI--3335-68","SI--PEM6-20& FS,SI--3335-63# FF,SI--3335-63# SS","SI--PEM6-20&,SI--3335-63#,SI--3335-63#",64,,66,,15,,15,,36,1752,"HK1003 -Blackpoint D2 - Rev.0E DD30092021"
1-5400,SI--3335-71,"INSTALLATION OF SIEMENS WAREHOUSE",5121,"HK1003-Rev.0E-3",TT_Task,"55902",-,-,-,32,TK_Active,30/08/2021,30/08/2021,03/12/2021,,"SI--3335-68 FS,SI-P221-440 FS","SI--3335-68,SI-P221-440","SI--PEM6-20& FS,SI--3335-63# FF,SI--3335-63# SS","SI--PEM6-20&,SI--3335-63#,SI--3335-63#",56,56,69,,13,13,16,,27,1584,"HK1003 -Blackpoint D2 - Rev.0E DD30092021"
1-5401,SI--5552-104,"DETAIL DESIGN  SITE INFRASTRUCTURE (by subcontractor)",5121,"HK1003-Rev.0E-3",TT_Task,"55902",-,-,-,100,TK_Complete,14/04/2021,14/04/2021,27/04/2021,27/04/2021,"SI--5552-103 FS","SI--5552-103","SI--5552-105 FS,SI--5552-105 FF","SI--5552-105,SI--5552-105",36,36,38,38,8,8,8,8,8,,"HK1003 -Blackpoint D2 - Rev.0E DD30092021"
1-5402,SI--5552-105,"REVIEW OF DETAIL DESIGN  SITE INFRASTRUCTURE (by Siemens)",5121,"HK1003-Rev.0E-3",TT_Task,"55902",-,-,-,100,TK_Complete,28/04/2021,28/04/2021,04/05/2021,04/05/2021,"SI--5552-104 FS,SI--5552-104 FF","SI--5552-104,SI--5552-104","SI--3335-66 FS","SI--3335-66",38,38,39,39,9,9,9,9,10,,"HK1003 -Blackpoint D2 - Rev.0E DD30092021"
1-5403,SI-P221-430,"20 - HOARDING PLAN AMENDMENT & RENEWAL OF HOARDING PLAN",5121,"HK1003-Rev.0E-3",TT_Task,"55902",-,-,-,100,TK_Complete,01/04/2021,01/04/2021,30/04/2021,30/04/2021,"SI-----1-05 FS","SI-----1-05","SI-----5-20 FS","SI-----5-20",34,34,38,38,8,8,9,9,7,,"HK1003 -Blackpoint D2 - Rev.0E DD30092021"
1-5404,SI-P221-440,"20(a) - HOARDING PLAN AMENDMENT & RENEWAL OF HOARDING PLAN",5121,"HK1003-Rev.0E-3",TT_Task,"55902",-,-,-,100,TK_Complete,10/06/2021,10/06/2021,09/07/2021,09/07/2021,"SI-----1-05 FS","SI-----1-05","SI--3335-71 FS","SI--3335-71",44,44,48,48,10,10,11,11,16,,"HK1003 -Blackpoint D2 - Rev.0E DD30092021"
1-5405,SI-P222-147,"64 - TEMPORARY EXCAVATION AND LATERAL SUPPORT (ELS) WORKS",5121,"HK1003-Rev.0E-3",TT_Task,"55902",-,-,-,100,TK_Complete,17/04/2021,17/04/2021,16/05/2021,16/05/2021,"SI-----1-05 FS,SI--UMC2Y70 FS,SI--UMC2A79 FS,SI--UM-2-35 FS","SI-----1-05,SI--UMC2Y70,SI--UMC2A79,SI--UM-2-35","SI20UMC5Z15 FS","SI20UMC5Z15",37,37,41,41,8,8,9,9,9,,"HK1003 -Blackpoint D2 - Rev.0E DD30092021"
1-5406,SI-P222-148,"64a - TEMPORARY EXCAVATION AND LATERAL SUPPORT (ELS) WORKS",5121,"HK1003-Rev.0E-3",TT_Task,"55902",-,-,-,100,TK_Complete,17/06/2021,17/06/2021,16/07/2021,16/07/2021,"SI20UBH2-81 FS","SI20UBH2-81","SI20UBH5-20 FS","SI20UBH5-20",45,45,49,49,10,10,11,11,17,,"HK1003 -Blackpoint D2 - Rev.0E DD30092021"
1-5407,SI-P222-149,"143 - MASTER LAYOUT PLAN REVISION",5121,"HK1003-Rev.0E-3",TT_Task,"55902",-,-,-,100,TK_Complete,01/06/2021,01/06/2021,29/08/2021,29/08/2021,"SI-P222-139 SS,SI-P222-175 FS","SI-P222-139,SI-P222-175","SI-P222-150 SS","SI-P222-150",43,43,56,56,10,10,13,13,15,,"HK1003 -Blackpoint D2 - Rev.0E DD30092021"
1-5408,SI-P222-150,"143b - LANDSCAPE MASTER PLAN REVISION",5121,"HK1003-Rev.0E-3",TT_Task,"55902",-,-,-,0,TK_NotStart,02/01/2023,,01/04/2023,,"SI-P222-149 SS,SI-P222-140 SS,SI-P222-176 FS","SI-P222-149,SI-P222-140,SI-P222-176","SI-----1-09 FS","SI-----1-09",126,,139,,29,,32,,88,2192,"HK1003 -Blackpoint D2 - Rev.0E DD30092021"
1-5409,SI20HB-8-27,"INSTALL BUMPERS HRSG20",5121,"HK1003-Rev.0E-3",TT_Task,"55902",-,-,-,0,TK_NotStart,21/02/2022,,20/03/2022,,"SI20HB-6-19 SS","SI20HB-6-19","SI20HA-6C24 FS","SI20HA-6C24",81,,85,,18,,19,,50,56,"HK1003 -Blackpoint D2 - Rev.0E DD30092021"
1-5410,SI20HB-6C29,"ERECTION STAIRCASE 2 (INLET DUCT) HRSG20",5121,"HK1003-Rev.0E-3",TT_Task,"55902",-,-,-,0,TK_NotStart,08/07/2022,,21/07/2022,,"SI20HB-6E33 FS","SI20HB-6E33","SI20HB-6C23 FS","SI20HB-6C23",100,,102,,23,,23,,73,216,"HK1003 -Blackpoint D2 - Rev.0E DD30092021"
1-5411,SI20HB-6-51,"ERECTION STACK HRSG20_Basering",5121,"HK1003-Rev.0E-3",TT_Task,"55902",-,-,-,0,TK_NotStart,23/06/2022,,29/06/2022,,"SI20BZP7-194 FS,SI20HB-4D40 FS,SI20HB-6-41 FS","SI20BZP7-194,SI20HB-4D40,SI20HB-6-41","SI20HB-6-43 FS","SI20HB-6-43",98,,99,,23,,23,,70,1696,"HK1003 -Blackpoint D2 - Rev.0E DD30092021"
1-5412,SI20HB-6-52,"ERECTION STACK HRSG20_Flue Gas Silencer",5121,"HK1003-Rev.0E-3",TT_Task,"55902",-,-,-,0,TK_NotStart,28/07/2022,,17/08/2022,,"SI20HB-6-45 FS","SI20HB-6-45","SI20HB-6-50 FS","SI20HB-6-50",103,,106,,24,,24,,76,1696,"HK1003 -Blackpoint D2 - Rev.0E DD30092021"
1-5413,SI20HB-6A18,"FOUNDATION CHECK AND PREPARATION HRSG20",5121,"HK1003-Rev.0E-3",TT_Task,"55902",-,-,-,0,TK_NotStart,10/01/2022,,16/01/2022,,"SI20UHA5-45 FS","SI20UHA5-45","SI20HB-6A17 FS","SI20HB-6A17",75,,76,,17,,17,,45,56,"HK1003 -Blackpoint D2 - Rev.0E DD30092021"
1-5414,SI--3335-73,"SITE POWER - SDB1.2.1 - INSTALLATION",5121,"HK1003-Rev.0E-3",TT_Task,"55902",-,-,-,100,TK_Complete,01/07/2021,01/07/2021,22/07/2021,22/07/2021,"SI-----5-20 FS,SI--5552-103 FS","SI-----5-20,SI--5552-103","SI--PEM6-20& FS","SI--PEM6-20&",47,47,50,50,11,11,11,11,20,,"HK1003 -Blackpoint D2 - Rev.0E DD30092021"
1-5415,SI--3335-72,"SITE POWER - SDB1.1 - DISMANTLE AND RELOCATE TO NEW LOCATION",5121,"HK1003-Rev.0E-3",TT_Task,"55902",-,-,-,100,TK_Complete,01/07/2021,01/07/2021,29/07/2021,29/07/2021,"SI-----5-20 FS,SI--5552-103 FS","SI-----5-20,SI--5552-103","SI--PEM6-20& FS","SI--PEM6-20&",47,47,51,51,11,11,12,12,20,,"HK1003 -Blackpoint D2 - Rev.0E DD30092021"
1-5416,SI--3335-75,"SITE POWER - SDB1.5 / SDB1.6  - INSTALLATION",5121,"HK1003-Rev.0E-3",TT_Task,"55902",-,-,-,100,TK_Complete,01/07/2021,01/07/2021,21/07/2021,21/07/2021,"SI-----5-20 FS,SI--5552-103 FS","SI-----5-20,SI--5552-103","SI--PEM6-20& FS","SI--PEM6-20&",47,47,50,50,11,11,11,11,20,,"HK1003 -Blackpoint D2 - Rev.0E DD30092021"
1-5417,SI--3335-74,"SITE POWER - SDB1.4 - INSTALLATION",5121,"HK1003-Rev.0E-3",TT_Task,"55902",-,-,-,100,TK_Complete,01/07/2021,01/07/2021,29/07/2021,29/07/2021,"SI-----5-20 FS,SI--5552-103 FS","SI-----5-20,SI--5552-103","SI--PEM6-20& FS","SI--PEM6-20&",47,47,51,51,11,11,12,12,20,,"HK1003 -Blackpoint D2 - Rev.0E DD30092021"
1-5418,SI--3335-76,"SITE POWER - GATE HOUSE/INDUCTION ROOM/FIRST AID/LCM&PTW OFFICE - INSTALLATION POWER SUPPLY",5121,"HK1003-Rev.0E-3",TT_Task,"55902",-,-,-,100,TK_Complete,01/07/2021,01/07/2021,20/08/2021,20/08/2021,"SI-----5-20 FS,SI--5552-103 FS","SI-----5-20,SI--5552-103","SI--PEM6-20& FS","SI--PEM6-20&",47,47,54,54,11,11,12,12,20,,"HK1003 -Blackpoint D2 - Rev.0E DD30092021"
1-5419,SI--3335-77,"SITE POWER - WAREHOUSE/DAY ACCOMODATION BUILDINGS - INSTALLATION POWER SUPPLY",5121,"HK1003-Rev.0E-3",TT_Task,"55902",-,-,-,61,TK_Active,01/07/2021,01/07/2021,26/11/2021,,"SI-----5-20 FS,SI--5552-103 FS","SI-----5-20,SI--5552-103","SI--PEM6-20& FS","SI--PEM6-20&",47,47,68,,11,11,16,,20,1640,"HK1003 -Blackpoint D2 - Rev.0E DD30092021"
1-5420,SI--3335-78,"SITE POWER - ABLUTION AND SHOWR CONTAINERS - INSTALLATION POWER SUPPLY",5121,"HK1003-Rev.0E-3",TT_Task,"55902",-,-,-,98,TK_Active,01/07/2021,01/07/2021,01/10/2021,,"SI-----5-20 FS,SI--5552-103 FS","SI-----5-20,SI--5552-103","SI--PEM6-20& FS","SI--PEM6-20&",47,47,60,,11,11,14,,20,2032,"HK1003 -Blackpoint D2 - Rev.0E DD30092021"
1-5421,SI--3335-79,"SITE POWER - AS PER IT CONCEPT - INSTALLATION OF FIBER OPTIC/LAN CABLES",5121,"HK1003-Rev.0E-3",TT_Task,"55902",-,-,-,100,TK_Complete,01/07/2021,01/07/2021,29/07/2021,29/07/2021,"SI-----5-20 FS,SI--5552-103 FS","SI-----5-20,SI--5552-103","SI--PEM6-20& FS","SI--PEM6-20&",47,47,51,51,11,11,12,12,20,,"HK1003 -Blackpoint D2 - Rev.0E DD30092021"
1-5422,SI--UEN-2-46,"BASIC DESIGN PLANT LAYOUT FUEL GAS AREA",5121,"HK1003-Rev.0E-3",TT_Task,"55902",-,-,-,100,TK_Complete,06/03/2021,06/03/2021,16/04/2021,16/04/2021,"SI--UEN2-40 FS","SI--UEN2-40","SI--UE-2E36 FS,SI--UE-2E36 FF","SI--UE-2E36,SI--UE-2E36",31,31,36,36,7,7,8,8,6,,"HK1003 -Blackpoint D2 - Rev.0E DD30092021"
1-5423,SI--UE-2-47,"BASIC DESIGN PLANT LAYOUT COOLING TOWER",5121,"HK1003-Rev.0E-3",TT_Task,"55902",-,-,-,100,TK_Complete,23/02/2021,23/02/2021,16/04/2021,16/04/2021,"SI--UE2-86 FS","SI--UE2-86","SI--UE2-E37 FS","SI--UE2-E37",29,29,36,36,6,6,8,8,5,,"HK1003 -Blackpoint D2 - Rev.0E DD30092021"
1-5424,SI-P222-151,"149 - FURTHER ENVIRONMENTAL PERMIT",5121,"HK1003-Rev.0E-3",TT_Task,"55902",-,-,-,100,TK_Complete,15/05/2021,15/05/2021,30/05/2021,30/05/2021,"SI--5552-85 FS","SI--5552-85","SI-----5-21& FS","SI-----5-21&",41,41,43,43,9,9,10,10,13,,"HK1003 -Blackpoint D2 - Rev.0E DD30092021"
1-5425,SI20PAD8-57,"COMMISSIONING CATHODIC PROTECTION FOR COOLING TOWER 20PUR",5121,"HK1003-Rev.0E-3",TT_Task,"55902",-,-,-,0,TK_NotStart,11/04/2023,,24/04/2023,,"SI20B--8-52 FS,SI20PUR8-25 FS,SI20B--8-50 FS","SI20B--8-52,SI20PUR8-25,SI20B--8-50","SI20PAD8-45 FS","SI20PAD8-45",140,,142,,32,,33,,94,424,"HK1003 -Blackpoint D2 - Rev.0E DD30092021"
1-5426,SI20PAD8-58,"COMMISSIONING CATHODIC PROTECTION FOR PAC & ELECTRICAL MODULES",5121,"HK1003-Rev.0E-3",TT_Task,"55902",-,-,-,0,TK_NotStart,11/04/2023,,24/04/2023,,"SI20PUR8-26 FS,SI20B--8-52 FS,SI20B--8-50 FS","SI20PUR8-26,SI20B--8-52,SI20B--8-50","SI20PAD8-45 FS","SI20PAD8-45",140,,142,,32,,33,,95,424,"HK1003 -Blackpoint D2 - Rev.0E DD30092021"
1-5427,SI20PAD8-59,"COMMISSIONING CATHODIC PROTECTION FOR CONDENSER",5121,"HK1003-Rev.0E-3",TT_Task,"55902",-,-,-,0,TK_NotStart,11/04/2023,,24/04/2023,,"SI20PUR8-27 FS,SI20B--8-52 FS,SI20B--8-50 FS","SI20PUR8-27,SI20B--8-52,SI20B--8-50","SI20PAD8-45 FS","SI20PAD8-45",140,,142,,32,,33,,95,424,"HK1003 -Blackpoint D2 - Rev.0E DD30092021"
1-5428,SI20---4-19,"LOGISTICS AND CUSTOMS PREPARATION OFFRACK / YARD LOT 7",5121,"HK1003-Rev.0E-3",TT_Task,"55902",-,-,-,0,TK_NotStart,01/04/2022,,28/04/2022,,"SI20---3-78 FS","SI20---3-78","SI20---3B98 FS","SI20---3B98",86,,90,,20,,21,,55,736,"HK1003 -Blackpoint D2 - Rev.0E DD30092021"
1-5429,SI20---3-78,"TIMES OF COMPLETION (FINAL DATA IN KANLOG) FOR OFFRACK PIPING LOT 7",5121,"HK1003-Rev.0E-3",TT_FinMile,"55902",-,-,-,0,TK_NotStart,31/03/2022,,31/03/2022,,"SI20---3B96 FS","SI20---3B96","SI20---4-19 FS","SI20---4-19",86,,86,,20,,20,,54,736,"HK1003 -Blackpoint D2 - Rev.0E DD30092021"
1-5430,SI-P222-152,"83a - ISSUE OF LICENCES",5121,"HK1003-Rev.0E-3",TT_Task,"55902",-,-,-,0,TK_NotStart,10/07/2023,,07/09/2023,,"SI20HA-9A45 FS","SI20HA-9A45","SI-----1-09 FS","SI-----1-09",153,,161,,35,,37,,99,920,"HK1003 -Blackpoint D2 - Rev.0E DD30092021"
1-5431,SI-P222-153,"81a- ISSUE OF FIRE SAFETY REQUIREMENTS FOR STORAGE/USE OF DG UNDER DANGEROUS GOODS ORDINANCE",5121,"HK1003-Rev.0E-3",TT_Task,"55902",-,-,-,0,TK_NotStart,12/10/2022,,09/01/2023,,"SI20SGY7A25 FS","SI20SGY7A25","SI-P222-157 SS","SI-P222-157",114,,127,,26,,29,,83,2544,"HK1003 -Blackpoint D2 - Rev.0E DD30092021"
1-5432,SI20HSJ3-84,"DETAIL DESIGN DECOMP. CHAMBER / HOT AIR BLOWER SUPPORT FRAME",5121,"HK1003-Rev.0E-3",TT_Task,"55902",-,-,-,100,TK_Complete,29/04/2021,29/04/2021,18/07/2021,18/07/2021,"SI20HS-2-88 FS","SI20HS-2-88","SI-P221-567& SS,SI-P221-566& SS,SI20HSJ3-85 FS","SI-P221-567&,SI-P221-566&,SI20HSJ3-85",38,38,50,50,9,9,11,11,10,,"HK1003 -Blackpoint D2 - Rev.0E DD30092021"
1-5433,SI20HSJ3-85,"BD - SUBMISSION & APPROVAL - DECOMP. CHAMBER / HOT AIR BLOWER SUPPORT FRAME",5121,"HK1003-Rev.0E-3",TT_Task,"55902",-,-,-,100,TK_Complete,19/07/2021,19/07/2021,16/09/2021,16/09/2021,"SI20HSJ3-84 FS","SI20HSJ3-84","SI20HSJ3-81 FF,SI20HSJ3-86 FS,SI20HSJ3-81 FS","SI20HSJ3-81,SI20HSJ3-86,SI20HSJ3-81",50,50,58,58,11,11,13,13,22,,"HK1003 -Blackpoint D2 - Rev.0E DD30092021"
1-5434,SI20HSJ3-86,"DESIGN, MANUFACTURING, SHOP TEST SCR EQUIPMENT HSJ/HSK",5121,"HK1003-Rev.0E-3",TT_Task,"55902",-,-,-,16,TK_Active,17/09/2021,17/09/2021,08/12/2021,,"SI20HSJ3-85 FS","SI20HSJ3-85","SI20HSJ3-83 FS","SI20HSJ3-83",58,58,70,,13,13,16,,29,2800,"HK1003 -Blackpoint D2 - Rev.0E DD30092021"
1-5435,SI-P221-396&,"50 - BD - SUBMISSION - GT PLATFORM",5121,"HK1003-Rev.0E-3",TT_Mile,"55902",-,-,-,100,TK_Complete,17/06/2021,17/06/2021,17/06/2021,17/06/2021,"","","SI--2M-11 FS","SI--2M-11",45,45,45,45,10,10,10,10,17,,"HK1003 -Blackpoint D2 - Rev.0E DD30092021"
1-5436,SI-P221-397&,"51 - BD - SUBMISSION - UMCM1Y SUPPORTING FRAME AND UMCLY PREFAB",5121,"HK1003-Rev.0E-3",TT_Mile,"55902",-,-,-,100,TK_Complete,05/07/2021,05/07/2021,05/07/2021,05/07/2021,"","","SI--2M-22 FS","SI--2M-22",48,48,48,48,11,11,11,11,20,,"HK1003 -Blackpoint D2 - Rev.0E DD30092021"
1-5437,SI-P221-398&,"52 - BD - SUBMISSION - UPY SUPPORTING FRAME FOR CW PIPES",5121,"HK1003-Rev.0E-3",TT_Mile,"55902",-,-,-,100,TK_Complete,03/08/2021,03/08/2021,03/08/2021,03/08/2021,"","","SI--2M-23 FS","SI--2M-23",52,52,52,52,12,12,12,12,24,,"HK1003 -Blackpoint D2 - Rev.0E DD30092021"
1-5438,SI-P221-399&,"53 - BD - SUBMISSION - UEY01/02 PIPE AND CABLE RACKS",5121,"HK1003-Rev.0E-3",TT_Mile,"55902",-,-,-,100,TK_Complete,03/08/2021,03/08/2021,03/08/2021,03/08/2021,"","","SI--2M-23 FS","SI--2M-23",52,52,52,52,12,12,12,12,24,,"HK1003 -Blackpoint D2 - Rev.0E DD30092021"
1-5439,SI-P221-401&,"54 - BD - SUBMISSION - UMY & ULY PIPE AND CABLE RACKS",5121,"HK1003-Rev.0E-3",TT_Mile,"55902",-,-,-,100,TK_Complete,17/06/2021,17/06/2021,17/06/2021,17/06/2021,"","","SI--2M-11 FS","SI--2M-11",45,45,45,45,10,10,10,10,18,,"HK1003 -Blackpoint D2 - Rev.0E DD30092021"
1-5440,SI--2222-141,"55 - BD - SUBMISSION - MiC PRE-ACCEPTANCE",5121,"HK1003-Rev.0E-3",TT_Task,"55902",-,-,-,100,TK_Complete,20/04/2021,20/04/2021,18/06/2021,18/06/2021,"SI--UE-2E36 FS,SI--UR-2-35 FS,SI--UE2-E37 FS,SI--UB-2-35 FS,SI20UBA2B03 FS","SI--UE-2E36,SI--UR-2-35,SI--UE2-E37,SI--UB-2-35,SI20UBA2B03","SI--UBA2-102 FS,SI20UBA2-30 FS,SI20UBA2C-70 FS,SI--UBA2-104 FS,SI--UBA2-84 FS,SI--UBA2-106 FS,SI20UBA2B-30 FS,SI20UBA2C-40 FS,SI--UBA2-102 FF,SI--UBA2-93 FS,SI--UBA2-96 FS","SI--UBA2-102,SI20UBA2-30,SI20UBA2C-70,SI--UBA2-104,SI--UBA2-84,SI--UBA2-106,SI20UBA2B-30,SI20UBA2C-40,SI--UBA2-102,SI--UBA2-93,SI--UBA2-96",37,37,45,45,8,8,10,10,9,,"HK1003 -Blackpoint D2 - Rev.0E DD30092021"
1-5441,SI--2222-142&,"56 - BD - SUBMISSION - UBA ACCESS PLATFORMS - 1",5121,"HK1003-Rev.0E-3",TT_Mile,"55902",-,-,-,100,TK_Complete,02/08/2021,02/08/2021,02/08/2021,02/08/2021,"SI-----1-05 FS","SI-----1-05","SI--UBA2-84 FS","SI--UBA2-84",52,52,52,52,12,12,12,12,24,,"HK1003 -Blackpoint D2 - Rev.0E DD30092021"
1-5442,SI--2222-143&,"57 - BD - SUBMISSION - UBA ACCESS PLATFORMS - 2",5121,"HK1003-Rev.0E-3",TT_Mile,"55902",-,-,-,0,TK_NotStart,09/12/2021,,09/12/2021,,"SI-----1-05 FS","SI-----1-05","SI20UBA2B-30 FS,SI20UBA2C-70 FS,SI--UBA2-104 FS,SI--UBA2-106 FS","SI20UBA2B-30,SI20UBA2C-70,SI--UBA2-104,SI--UBA2-106",70,,70,,16,,16,,41,672,"HK1003 -Blackpoint D2 - Rev.0E DD30092021"
1-5443,SI-P221-211&,"62 - BD - SUBMISSION - DETAIL DESIGN CONCRETE - 20UBY05",5121,"HK1003-Rev.0E-3",TT_Mile,"55902",-,-,-,0,TK_NotStart,15/11/2021,,15/11/2021,,"SI-----1-05 FS","SI-----1-05","SI20UBY2-62 FS","SI20UBY2-62",67,,67,,15,,15,,38,336,"HK1003 -Blackpoint D2 - Rev.0E DD30092021"
1-5444,SI-P222-154,"UPDATE OF PROCESS & OPERATIONAL SAFETY MEASURES",5121,"HK1003-Rev.0E-3",TT_Task,"55902",-,-,-,0,TK_NotStart,01/01/2023,,21/01/2023,,"SI20EK-6-19 FS,SI20MBP6-11 FS,SI--EK-2-07 FS,SI--EK-2-05 FS,SI20EK-6-15 SS","SI20EK-6-19,SI20MBP6-11,SI--EK-2-07,SI--EK-2-05,SI20EK-6-15","SI-P222-63 FS","SI-P222-63",126,,129,,29,,30,,88,264,"HK1003 -Blackpoint D2 - Rev.0E DD30092021"
1-5445,SI-P222-155,"PREPARE PILOT SCHEME FOR CT",5121,"HK1003-Rev.0E-3",TT_Task,"55902",-,-,-,100,TK_Complete,17/04/2021,17/04/2021,15/05/2021,15/05/2021,"SI--PAD2-85 FS,SI--PAD2-75 FS,SI--PAD2-60 FS,SI--UR-2-35 FS","SI--PAD2-85,SI--PAD2-75,SI--PAD2-60,SI--UR-2-35","SI-P222-64 FS","SI-P222-64",37,37,41,41,8,8,9,9,9,,"HK1003 -Blackpoint D2 - Rev.0E DD30092021"
1-5446,SI-P222-156,"CALCULATION OF OVERALL FIRE WATER DEMAND / UPDATE OF INSPECTION PROCEDURES/PREPARATION SCHEMATIC DWGS",5121,"HK1003-Rev.0E-3",TT_Task,"55902",-,-,-,0,TK_NotStart,01/07/2022,,11/08/2022,,"SI20SGA6A26 SS","SI20SGA6A26","SI-P222-70 FS,SI-P222-72 FS,SI-P222-74 FS,SI-P222-74 FF","SI-P222-70,SI-P222-72,SI-P222-74,SI-P222-74",99,,105,,23,,24,,72,640,"HK1003 -Blackpoint D2 - Rev.0E DD30092021"
1-5447,SI-P222-157,"PREPARATION OF AS-BUILT DRAWINGS / MATERIAL TEST RECORDS FOR DG APPLICATION",5121,"HK1003-Rev.0E-3",TT_Task,"55902",-,-,-,0,TK_NotStart,12/10/2022,,18/12/2022,,"SI-P222-153 SS","SI-P222-153","SI-P222-79 FS","SI-P222-79",114,,124,,26,,28,,83,2544,"HK1003 -Blackpoint D2 - Rev.0E DD30092021"
1-5448,SI-P222-158,"PREPARATION FOR LICENSE FOR STORAGE OF DG (CONSTRUCTION WORKS)",5121,"HK1003-Rev.0E-3",TT_Task,"55902",-,-,-,100,TK_Complete,19/05/2021,19/05/2021,15/06/2021,15/06/2021,"SI--SG-2-90 FS,SI--SG-2-92 FF,SI--UM-2-35 FS,SI--UE-2E36 FS,SI--UR-2-35 FS,SI--UE2-E37 FS,SI--UB-2-35 FS","SI--SG-2-90,SI--SG-2-92,SI--UM-2-35,SI--UE-2E36,SI--UR-2-35,SI--UE2-E37,SI--UB-2-35","SI-P222-77 FS","SI-P222-77",41,41,45,45,9,9,10,10,13,,"HK1003 -Blackpoint D2 - Rev.0E DD30092021"
1-5449,SI-P222-159,"PREPARATION DOCUMENTATION PRESSURE VESSELS (CONSTRUCTION WORKS)",5121,"HK1003-Rev.0E-3",TT_Task,"55902",-,-,-,100,TK_Complete,31/05/2021,31/05/2021,30/06/2021,30/06/2021,"SI20UHA2B03 FS,SI--UHA2-78 FS,SI--HA-2-101 FS","SI20UHA2B03,SI--UHA2-78,SI--HA-2-101","SI-P222-81 FS","SI-P222-81",43,43,47,47,10,10,11,11,15,,"HK1003 -Blackpoint D2 - Rev.0E DD30092021"
1-5450,SI-P222-160,"PREPARATION CERTIFICATIONS FOR LIFTING APPLIANCES",5121,"HK1003-Rev.0E-3",TT_Task,"55902",-,-,-,0,TK_NotStart,04/04/2022,,24/04/2022,,"SI20SMM6-05 FS","SI20SMM6-05","SI-P222-82 FS","SI-P222-82",87,,90,,20,,21,,56,4448,"HK1003 -Blackpoint D2 - Rev.0E DD30092021"
1-5451,SI-P222-161,"PREPARATION CERTIFICATIONS FOR PRESSURE VESSELS",5121,"HK1003-Rev.0E-3",TT_Task,"55902",-,-,-,0,TK_NotStart,22/11/2022,,21/01/2023,,"SI20BZK7-187 FS","SI20BZK7-187","SI-P222-83 FS,SI-P222-83 FF","SI-P222-83,SI-P222-83",120,,129,,28,,30,,85,296,"HK1003 -Blackpoint D2 - Rev.0E DD30092021"
1-5452,SI--HA-2-101,"HRSG ENGINEERING / PREPARATION BD SUBMISSION - STACK / MAINFRAME",5121,"HK1003-Rev.0E-3",TT_Task,"55902",-,-,-,100,TK_Complete,27/01/2021,27/01/2021,15/05/2021,15/05/2021,"SI--HA-2-85 FS","SI--HA-2-85","SI--HA-2-102 FS,SI-P221-430& FS,SI-P221-561& FS,SI--HB-2-16 FS,SI-P222-159 FS","SI--HA-2-102,SI-P221-430&,SI-P221-561&,SI--HB-2-16,SI-P222-159",25,25,41,41,5,5,9,9,3,,"HK1003 -Blackpoint D2 - Rev.0E DD30092021"
1-5453,SI--HA-2-102,"HRSG ENGINEERING / PREPARATION BD SUBMISSION - PLATFORMS/STEELWORK",5121,"HK1003-Rev.0E-3",TT_Task,"55902",-,-,-,100,TK_Complete,16/05/2021,16/05/2021,14/07/2021,14/07/2021,"SI--HA-2-101 FS","SI--HA-2-101","SI-P221-562& FS,SI-P221-563& FS,SI-P221-564& FS,SI-P221-565& FS,SI--HB-2-18 FS","SI-P221-562&,SI-P221-563&,SI-P221-564&,SI-P221-565&,SI--HB-2-18",41,41,49,49,9,9,11,11,13,,"HK1003 -Blackpoint D2 - Rev.0E DD30092021"
1-5454,SI-P222-162,"PREPARATION OF FOREIGN WORKER VISA / JUSTIFICATION FOR FOREIGN EMPLOYMENT",5121,"HK1003-Rev.0E-3",TT_Task,"55902",-,-,-,100,TK_Complete,12/02/2021,12/02/2021,31/05/2021,31/05/2021,"SI-----1-05 FS","SI-----1-05","SI-P222-85 FS,SI-P222-86 SS","SI-P222-85,SI-P222-86",27,27,43,43,6,6,10,10,4,,"HK1003 -Blackpoint D2 - Rev.0E DD30092021"
1-5455,SI-P222-163,"Preparation of NOTIFICATION OF CONSTRUCTION WORKS AND WORKER REGISTRATION",5121,"HK1003-Rev.0E-3",TT_Task,"55902",-,-,-,100,TK_Complete,14/05/2021,14/05/2021,31/05/2021,31/05/2021,"SI--5552-85 FS","SI--5552-85","SI-P222-84 FS","SI-P222-84",40,40,43,43,9,9,10,10,12,,"HK1003 -Blackpoint D2 - Rev.0E DD30092021"
1-5456,SI-P222-164,"PREPARATION OF DOCUMENTS FOR SUBMISSIONS 90/92/94/95",5121,"HK1003-Rev.0E-3",TT_Task,"55902",-,-,-,100,TK_Complete,04/05/2021,04/05/2021,01/06/2021,01/06/2021,"SI--5552-13 SS,SI--2222-136 SS,SI--2222-135 SS,SI-P222-86 FS","SI--5552-13,SI--2222-136,SI--2222-135,SI-P222-86","SI-P222-91 FS,SI-P222-92 FS,SI-P222-89 FS,SI-P222-87 FS","SI-P222-91,SI-P222-92,SI-P222-89,SI-P222-87",39,39,43,43,9,9,10,10,11,,"HK1003 -Blackpoint D2 - Rev.0E DD30092021"
1-5457,SI-P222-165,"PREPARATION OF SUBMISSIONS TO CIC/PCFB",5121,"HK1003-Rev.0E-3",TT_Task,"55902",-,-,-,100,TK_Complete,14/05/2021,14/05/2021,31/05/2021,31/05/2021,"SI--5552-85 SS","SI--5552-85","SI-P222-93 FS,SI-P222-94 FS,SI-P222-95 FS,SI-P222-97 FS,SI-P222-98 FS,SI-P222-99 FS","SI-P222-93,SI-P222-94,SI-P222-95,SI-P222-97,SI-P222-98,SI-P222-99",40,40,43,43,9,9,10,10,12,,"HK1003 -Blackpoint D2 - Rev.0E DD30092021"
1-5458,SI-P222-166,"PREPARATION OF SUBMISSIONS FOR FORM 3 - COMPLETION OF CONSTRUCTION WORKS",5121,"HK1003-Rev.0E-3",TT_Task,"55902",-,-,-,0,TK_NotStart,17/12/2023,,30/12/2023,,"SI20M--9-90 FS","SI20M--9-90","SI-P222-96 FS","SI-P222-96",176,,178,,41,,41,,99,0,"HK1003 -Blackpoint D2 - Rev.0E DD30092021"
1-5459,SI-P222-167,"PREPARATION OF SUBMISSION FOR FIREWALL IMPORT LICENSE",5121,"HK1003-Rev.0E-3",TT_Task,"55902",-,-,-,0,TK_NotStart,19/11/2021,,19/12/2021,,"SI20UBA3H55 SS","SI20UBA3H55","SI-P222-100 FS,SI-P222-168 FS","SI-P222-100,SI-P222-168",67,,72,,15,,16,,39,896,"HK1003 -Blackpoint D2 - Rev.0E DD30092021"
1-5460,SI-P222-168,"PREPARATION OF SUBMISSION FOR 104/105/106",5121,"HK1003-Rev.0E-3",TT_Task,"55902",-,-,-,0,TK_NotStart,20/12/2021,,19/01/2022,,"SI-P222-167 FS","SI-P222-167","SI-P222-101 FS","SI-P222-101",72,,76,,16,,17,,43,896,"HK1003 -Blackpoint D2 - Rev.0E DD30092021"
1-5461,SI-P222-169,"PREPARATION OF FORM 542 SUBMISSION (TOWN WATER DOMESTIC WATER SUPPLY)",5121,"HK1003-Rev.0E-3",TT_Task,"55902",-,-,-,100,TK_Complete,02/06/2021,02/06/2021,15/06/2021,15/06/2021,"SI---1P2A530 FS,SI20TPM5A2-5 FS,SI---1P2A520 FS","SI---1P2A530,SI20TPM5A2-5,SI---1P2A520","SI-P222-104 FS","SI-P222-104",43,43,45,45,10,10,10,10,15,,"HK1003 -Blackpoint D2 - Rev.0E DD30092021"
1-5462,SI-P222-170,"PREPARATION OF FORM 542 SUBMISSION (TOWN WATER SERVICES SYSTEM)",5121,"HK1003-Rev.0E-3",TT_Task,"55902",-,-,-,100,TK_Complete,02/06/2021,02/06/2021,15/06/2021,15/06/2021,"SI---1P2A530 FS,SI20TPM6B2-5 FS,SI20TPM6A2-5 FS,SI---1P2A520 FS","SI---1P2A530,SI20TPM6B2-5,SI20TPM6A2-5,SI---1P2A520","SI-P222-115 FS,SI-P222-112 FS","SI-P222-115,SI-P222-112",43,43,45,45,10,10,10,10,15,,"HK1003 -Blackpoint D2 - Rev.0E DD30092021"
1-5463,SI-P222-171,"PREPARATION OF FORM 542 SUBMISSION (FRESH FIRE WATER SUPPLY)",5121,"HK1003-Rev.0E-3",TT_Task,"55902",-,-,-,100,TK_Complete,16/07/2021,16/07/2021,17/08/2021,17/08/2021,"SI20TPF1C2-5 FS,SI20TPF1B2-5 FS,SI20TPF1A2-5 FS,SI---4P2A10 FS,SI---3P2A10 FS,SI---2P2A10 FF,SI--SG-2-80 SS","SI20TPF1C2-5,SI20TPF1B2-5,SI20TPF1A2-5,SI---4P2A10,SI---3P2A10,SI---2P2A10,SI--SG-2-80","SI-P222-120 FS","SI-P222-120",49,49,54,54,11,11,12,12,22,,"HK1003 -Blackpoint D2 - Rev.0E DD30092021"
1-5464,CL-3335-80,"PILING/PILE TRIMMING WORKS (CLP SCOPE)",5121,"HK1003-Rev.0E-3",TT_Task,"55902",-,-,-,100,TK_Complete,15/01/2021,15/01/2021,30/05/2021,30/05/2021,"SI-----1-05 FS","SI-----1-05","SI-P222-128 FS,CLP20UEZ5-81 FS,CLP20ULZ5-77 FS","SI-P222-128,CLP20UEZ5-81,CLP20ULZ5-77",23,23,43,43,5,5,10,10,2,,"HK1003 -Blackpoint D2 - Rev.0E DD30092021"
1-5465,SI-P222-172,"DRAIN TESTS AND REPORTS",5121,"HK1003-Rev.0E-3",TT_Task,"55902",-,-,-,0,TK_NotStart,09/11/2022,,31/12/2022,,"SI-UZA2-90 FS","SI-UZA2-90","SI20MB-9-15& FS,SI20MB-9-15 FS,SI-P222-130 FS","SI20MB-9-15&,SI20MB-9-15,SI-P222-130",118,,126,,27,,29,,85,968,"HK1003 -Blackpoint D2 - Rev.0E DD30092021"
1-5466,SI-P222-173,"PREPARATION OF AS-BUILT DOCUMENTATION FOR FSI/314 & FSI 501 SUBMISSION",5121,"HK1003-Rev.0E-3",TT_Task,"55902",-,-,-,0,TK_NotStart,21/11/2022,,01/01/2023,,"SI20SGE6E15 FS,SI20SGM6-15 FS,SI--SGM6-15 FS,SI20SGC6-15 FF,SI20SGJ6-5 FF,SI20SGC6J15 FF,SI20SGA6A26 FF,SI20SGA6A27 FF,SI20SGA6-15 FS,SI20SGM6-18 FF,SI20SGC6J26 FF,SI20SGC6J27 FS,SI20SGC6J28 FS,SI20SGC6J20 FS,SI20SGC6J21 FF,SI20SGC6J22 FS,SI20SGC6J23 FS,SI20SGC6J24 FF,SI20SGC6J25 FF,SI20SGM6-21 FS,SI20SGC6J16 FF,SI20SGJ6-16 FF,SI20SGC6J17 FF,SI20SGM6-17 FS,SI20SGC6J18 FF,SI20SGM6-20 FS,SI20TPF1A6-25 FS,SI20TPF1A6-20 FS,SI20TPF1B6-25 FS,SI20TPF1B6-20 FS,SI20TPF1C6-25 FS,SI20TPF1C6-20 FS","SI20SGE6E15,SI20SGM6-15,SI--SGM6-15,SI20SGC6-15,SI20SGJ6-5,SI20SGC6J15,SI20SGA6A26,SI20SGA6A27,SI20SGA6-15,SI20SGM6-18,SI20SGC6J26,SI20SGC6J27,SI20SGC6J28,SI20SGC6J20,SI20SGC6J21,SI20SGC6J22,SI20SGC6J23,SI20SGC6J24,SI20SGC6J25,SI20SGM6-21,SI20SGC6J16,SI20SGJ6-16,SI20SGC6J17,SI20SGM6-17,SI20SGC6J18,SI20SGM6-20,SI20TPF1A6-25,SI20TPF1A6-20,SI20TPF1B6-25,SI20TPF1B6-20,SI20TPF1C6-25,SI20TPF1C6-20","SI-P222-133 FS,SI-P222-134 FS,SI-P222-137 FS,SI-P222-138 FS,SI-P222-174 FS,SI-P222-136 FS,SI-P222-176 SS,SI-P222-178 SS,SI-P222-179 SS","SI-P222-133,SI-P222-134,SI-P222-137,SI-P222-138,SI-P222-174,SI-P222-136,SI-P222-176,SI-P222-178,SI-P222-179",120,,126,,28,,29,,85,152,"HK1003 -Blackpoint D2 - Rev.0E DD30092021"
1-5467,SI-P222-174,"PREPARATION OF DOCUMENTATION FOR OP SUBMISSION",5121,"HK1003-Rev.0E-3",TT_Task,"55902",-,-,-,0,TK_NotStart,02/01/2023,,01/04/2023,,"SI-P222-173 FS","SI-P222-173","SI-P222-137 FS,SI-P222-138 FS","SI-P222-137,SI-P222-138",126,,139,,29,,32,,88,192,"HK1003 -Blackpoint D2 - Rev.0E DD30092021"
1-5468,SI-P222-175,"PREPARATION OF LAYOUT/LANDSCAPING PLAN",5121,"HK1003-Rev.0E-3",TT_Task,"55902",-,-,-,100,TK_Complete,17/04/2021,17/04/2021,31/05/2021,31/05/2021,"SI--UM-2-35 FS,SI--UE-2E36 FS,SI--UR-2-35 FS,SI--UE2-E37 FS,SI--UB-2-35 FS","SI--UM-2-35,SI--UE-2E36,SI--UR-2-35,SI--UE2-E37,SI--UB-2-35","SI-P222-149 FS,SI-P222-139 FS","SI-P222-149,SI-P222-139",37,37,43,43,8,8,10,10,9,,"HK1003 -Blackpoint D2 - Rev.0E DD30092021"
1-5469,SI-P222-176,"PREPARATION OF LAYOUT/LANDSCAPING PLAN - REVISED/FINAL",5121,"HK1003-Rev.0E-3",TT_Task,"55902",-,-,-,0,TK_NotStart,21/11/2022,,01/01/2023,,"SI-P222-173 SS","SI-P222-173","SI-P222-140 FS,SI-P222-150 FS","SI-P222-140,SI-P222-150",120,,126,,28,,29,,85,2192,"HK1003 -Blackpoint D2 - Rev.0E DD30092021"
1-5470,SI-P222-177,"PREPARATION OF BPPS APCL SUBMISSION",5121,"HK1003-Rev.0E-3",TT_Task,"55902",-,-,-,0,TK_NotStart,27/05/2022,,07/07/2022,,"SI20CFE4-40 FF","SI20CFE4-40","SI-P222-141 FS","SI-P222-141",94,,100,,22,,23,,66,1424,"HK1003 -Blackpoint D2 - Rev.0E DD30092021"
1-5471,SI-P222-178,"PREPARATION OF FINAL SUBMISSION DOCUMENTATION (TOWN WATER DOMESTIC WATER SUPPLY/TOWN WATER SERVICE)",5121,"HK1003-Rev.0E-3",TT_Task,"55902",-,-,-,0,TK_NotStart,21/11/2022,,14/01/2023,,"SI-P222-173 SS,SI-P222-109 FS","SI-P222-173,SI-P222-109","SI-P222-110 FS,SI-P222-118 FS","SI-P222-110,SI-P222-118",120,,128,,28,,29,,85,152,"HK1003 -Blackpoint D2 - Rev.0E DD30092021"
1-5472,SI-P222-179,"PREPARATION OF FINAL SUBMISSION DOCUMENTATION ( FRESH FIRE WATER)",5121,"HK1003-Rev.0E-3",TT_Task,"55902",-,-,-,0,TK_NotStart,21/11/2022,,29/12/2022,,"SI-P222-173 SS","SI-P222-173","SI-P222-126 FS","SI-P222-126",120,,125,,28,,29,,85,280,"HK1003 -Blackpoint D2 - Rev.0E DD30092021"
1-5473,SI20SMM6-74,"(CCC) CRANE 20SMM03 IN  SERVICE 20UMC",5121,"HK1003-Rev.0E-3",TT_Mile,"55902",-,-,-,0,TK_NotStart,02/05/2022,,02/05/2022,,"SI20SMM6-73 FS","SI20SMM6-73","SI20SMM6-71 FS","SI20SMM6-71",91,,91,,21,,21,,61,368,"HK1003 -Blackpoint D2 - Rev.0E DD30092021"
1-5474,SI20SMM6-72,"PRE-ERECTION CRANE 20SMM03 FOR 20UMC / PREPARATION FOR LIFTING",5121,"HK1003-Rev.0E-3",TT_Task,"55902",-,-,-,0,TK_NotStart,11/04/2022,,17/04/2022,,"SI20UMC5B97 FF","SI20UMC5B97","SI20SMM6-73 FS","SI20SMM6-73",88,,89,,20,,20,,57,368,"HK1003 -Blackpoint D2 - Rev.0E DD30092021"
1-5475,SI20SMM6-73,"ERECTION / ACCEPTANCE TEST CRANE 20SMM03 FOR 20UMC",5121,"HK1003-Rev.0E-3",TT_Task,"55902",-,-,-,0,TK_NotStart,18/04/2022,,01/05/2022,,"SI20SMM6-72 FS","SI20SMM6-72","SI20SMM6-74 FS","SI20SMM6-74",89,,91,,20,,21,,58,368,"HK1003 -Blackpoint D2 - Rev.0E DD30092021"
1-5476,SI20UMC5B97,"(RFE) STEEL STRUCTURE CRANE WALKWAY & RAILS  20SMM03 20UMC",5121,"HK1003-Rev.0E-3",TT_FinMile,"55902",-,-,-,0,TK_NotStart,17/04/2022,,17/04/2022,,"SI20UMC5B96 FS","SI20UMC5B96","SI20SMM6-72 FF","SI20SMM6-72",89,,89,,20,,20,,58,368,"HK1003 -Blackpoint D2 - Rev.0E DD30092021"
1-5477,SI20UMC5C57,"(RFE) ROOF CLOSED (ANNEX) 20UMC (single layer)",5121,"HK1003-Rev.0E-3",TT_Mile,"55902",-,-,-,0,TK_NotStart,02/05/2022,,02/05/2022,,"SI20UMC5C56 SS","SI20UMC5C56","SI20LDK6M15 FS","SI20LDK6M15",91,,91,,21,,21,,61,248,"HK1003 -Blackpoint D2 - Rev.0E DD30092021"
1-5478,SI20UPY2-36,"DETAIL DESIGN BARBENDING STRUCTURE 20UPY",5121,"HK1003-Rev.0E-3",TT_Task,"55902",-,-,-,100,TK_Complete,01/09/2021,01/09/2021,21/09/2021,21/09/2021,"SI20UPY2-25 FS","SI20UPY2-25","SI20UPY5P05.00 FS","SI20UPY5P05.00",56,56,59,59,13,13,13,13,28,,"HK1003 -Blackpoint D2 - Rev.0E DD30092021"
1-5479,SI20UPY2-37,"BD- BA10 COMMENCEMENT OF WORK CONCRETE 20UPY",5121,"HK1003-Rev.0E-3",TT_FinMile,"55902",-,-,-,100,TK_Complete,07/09/2021,07/09/2021,07/09/2021,07/09/2021,"SI20UPY2-40 FS","SI20UPY2-40","SI20UPY5P10 FS","SI20UPY5P10",57,57,57,57,13,13,13,13,28,,"HK1003 -Blackpoint D2 - Rev.0E DD30092021"
1-5480,SI20UTG2-89,"DETAIL DESIGN BARBENDING STRUCTURE 20UTG01",5121,"HK1003-Rev.0E-3",TT_Task,"55902",-,-,-,0,TK_NotStart,20/12/2021,,09/01/2022,,"SI20UTG2-30 FS","SI20UTG2-30","SI20UTG5-10 FS","SI20UTG5-10",72,,75,,16,,17,,43,3384,"HK1003 -Blackpoint D2 - Rev.0E DD30092021"
1-5481,SI20UTG2-90,"BD - BA10 COMMENCEMENT OF WORK CONCRETE 20UTG01",5121,"HK1003-Rev.0E-3",TT_FinMile,"55902",-,-,-,0,TK_NotStart,23/01/2022,,23/01/2022,,"SI20UTG2-35 FS","SI20UTG2-35","SI20UTG5-12 FS","SI20UTG5-12",77,,77,,18,,18,,46,3384,"HK1003 -Blackpoint D2 - Rev.0E DD30092021"
1-5482,SI20UTG2-91,"DETAIL DESIGN BARBENDING STRUCTURE 20UTG07",5121,"HK1003-Rev.0E-3",TT_Task,"55902",-,-,-,0,TK_NotStart,09/12/2021,,29/12/2021,,"SI20UTG2-46 FS","SI20UTG2-46","SI20UTG5-70.00 FS","SI20UTG5-70.00",70,,73,,16,,17,,41,2936,"HK1003 -Blackpoint D2 - Rev.0E DD30092021"
1-5483,SI20UTG2-92,"BD - BA10 COMMENCEMENT OF WORK CONCRETE 20UTG07",5121,"HK1003-Rev.0E-3",TT_FinMile,"55902",-,-,-,0,TK_NotStart,12/01/2022,,12/01/2022,,"SI20UTG2-47 FS","SI20UTG2-47","SI20UTG5-74 FS","SI20UTG5-74",75,,75,,17,,17,,45,2872,"HK1003 -Blackpoint D2 - Rev.0E DD30092021"
1-5484,SI--UMX2-86,"DETAIL DESIGN BARBENDING STRUCTURE UMX",5121,"HK1003-Rev.0E-3",TT_Task,"55902",-,-,-,0,TK_NotStart,09/11/2021,,29/11/2021,,"SI--UMX2-65 FS","SI--UMX2-65","SI20UMX5-05 FS","SI20UMX5-05",66,,69,,15,,16,,37,160,"HK1003 -Blackpoint D2 - Rev.0E DD30092021"
1-5485,SI--UMX2-87,"BD- BA10 COMMENCEMENT OF WORK CONCRETE UMX",5121,"HK1003-Rev.0E-3",TT_FinMile,"55902",-,-,-,0,TK_NotStart,06/12/2021,,06/12/2021,,"SI--UMX2-85 FS","SI--UMX2-85","SI20UMX5-10 FS","SI20UMX5-10",70,,70,,16,,16,,41,216,"HK1003 -Blackpoint D2 - Rev.0E DD30092021"
1-5486,SI20USX2-44,"DETAIL DESIGN BARBENDING STRUCTURE 20USX",5121,"HK1003-Rev.0E-3",TT_Task,"55902",-,-,-,0,TK_NotStart,17/03/2022,,06/04/2022,,"SI20USX2-43 FS","SI20USX2-43","SI20USX5-10 FS","SI20USX5-10",84,,87,,19,,20,,53,2392,"HK1003 -Blackpoint D2 - Rev.0E DD30092021"
1-5487,SI20USX2-45,"BD - BA10 COMMENCEMENT OF WORK CONCRETE 20USX",5121,"HK1003-Rev.0E-3",TT_FinMile,"55902",-,-,-,0,TK_NotStart,21/02/2022,,21/02/2022,,"SI20USX2-35 FS","SI20USX2-35","SI20USX5-20 FS","SI20USX5-20",81,,81,,18,,18,,50,2784,"HK1003 -Blackpoint D2 - Rev.0E DD30092021"
1-5488,SI20UHW2-51,"DETAIL DESIGN BARBENDING STRUCTURE UHW",5121,"HK1003-Rev.0E-3",TT_Task,"55902",-,-,-,100,TK_Complete,18/08/2021,18/08/2021,07/09/2021,07/09/2021,"SI20UHW2-45 FF","SI20UHW2-45","SI20UHW5-20 FF","SI20UHW5-20",54,54,57,57,12,12,13,13,26,,"HK1003 -Blackpoint D2 - Rev.0E DD30092021"
1-5489,SI20UHW2-52,"BD - BA10 COMMENCEMENT OF WORK CONCRETE UHW",5121,"HK1003-Rev.0E-3",TT_FinMile,"55902",-,-,-,0,TK_NotStart,17/11/2021,,17/11/2021,,"SI20UHW2-50 FS","SI20UHW2-50","SI20UHW5-70.04 FS","SI20UHW5-70.04",67,,67,,15,,15,,38,240,"HK1003 -Blackpoint D2 - Rev.0E DD30092021"
1-5490,SI20UBA2-51,"DETAIL DESIGN BARBENDING STRUCTURE 20UBA1110/20",5121,"HK1003-Rev.0E-3",TT_Task,"55902",-,-,-,0,TK_NotStart,18/11/2021,,08/12/2021,,"SI20UBA2-30 FF","SI20UBA2-30","SI20UBA2-35 FS","SI20UBA2-35",67,,70,,15,,16,,39,368,"HK1003 -Blackpoint D2 - Rev.0E DD30092021"
1-5491,SI20UBA2-52,"BD - BA10 COMMENCEMENT OF WORK CONCRETE 20UBA1110/20",5121,"HK1003-Rev.0E-3",TT_FinMile,"55902",-,-,-,0,TK_NotStart,12/01/2022,,12/01/2022,,"SI20UBA2-35 FS","SI20UBA2-35","SI20UBA5-55 FF","SI20UBA5-55",75,,75,,17,,17,,45,368,"HK1003 -Blackpoint D2 - Rev.0E DD30092021"
1-5492,SI20UTG2-93,"DETAIL DESIGN BARBENDING STRUCTURE 20UTG04",5121,"HK1003-Rev.0E-3",TT_Task,"55902",-,-,-,0,TK_NotStart,20/12/2021,,09/01/2022,,"SI20UTG2-54 FS","SI20UTG2-54","SI20UTG5-40 FS","SI20UTG5-40",72,,75,,16,,17,,43,3384,"HK1003 -Blackpoint D2 - Rev.0E DD30092021"
1-5493,SI20UTG2-94,"BD - BA10 COMMENCEMENT OF WORK CONCRETE 20UTG04",5121,"HK1003-Rev.0E-3",TT_FinMile,"55902",-,-,-,0,TK_NotStart,23/01/2022,,23/01/2022,,"SI20UTG2-55 FS","SI20UTG2-55","SI20UTG5-42 FS","SI20UTG5-42",77,,77,,18,,18,,46,3328,"HK1003 -Blackpoint D2 - Rev.0E DD30092021"
1-5494,SI20UEN2-107,"DETAIL DESIGN BARBENDING STRUCTURE 20UEN",5121,"HK1003-Rev.0E-3",TT_Task,"55902",-,-,-,0,TK_NotStart,09/12/2021,,29/12/2021,,"SI20UEN2-80 FS","SI20UEN2-80","SI20UEN5-05.00 FS","SI20UEN5-05.00",70,,73,,16,,17,,41,248,"HK1003 -Blackpoint D2 - Rev.0E DD30092021"
1-5495,SI--UEN2A76,"BD - BA10 COMMENCEMENT OF WORK CONCRETE 20UEN",5121,"HK1003-Rev.0E-3",TT_FinMile,"55902",-,-,-,0,TK_NotStart,12/01/2022,,12/01/2022,,"SI20UEN2-77 FS","SI20UEN2-77","SI20UEN5-10 FS","SI20UEN5-10",75,,75,,17,,17,,45,256,"HK1003 -Blackpoint D2 - Rev.0E DD30092021"
1-5496,SI--ULA2-80,"DETAIL DESIGN BARBENDING STRUCTURE 20ULA",5121,"HK1003-Rev.0E-3",TT_Task,"55902",-,-,-,100,TK_Complete,17/08/2021,17/08/2021,06/09/2021,06/09/2021,"SI--ULA2-78 FF","SI--ULA2-78","SI20ULA5-05 FF,SI20ULA5-05.00 FS","SI20ULA5-05,SI20ULA5-05.00",54,54,57,57,12,12,13,13,26,,"HK1003 -Blackpoint D2 - Rev.0E DD30092021"
1-5497,SI--ULA2-81,"BD - BA10 COMMENCEMENT OF WORK CONCRETE 20ULA",5121,"HK1003-Rev.0E-3",TT_FinMile,"55902",-,-,-,0,TK_NotStart,15/02/2022,,15/02/2022,,"SI--ULA2-79 FS,SI--ULA2-85 FS","SI--ULA2-79,SI--ULA2-85","SI20ULA5-15.02 FS","SI20ULA5-15.02",80,,80,,18,,18,,50,272,"HK1003 -Blackpoint D2 - Rev.0E DD30092021"
1-5498,SI20UBH2-96,"DETAIL DESIGN BARBENDING STRUCTURE 20UBH01",5121,"HK1003-Rev.0E-3",TT_Task,"55902",-,-,-,0,TK_NotStart,16/10/2021,,05/11/2021,,"SI20UBH2-94 FS","SI20UBH2-94","SI20UBH5-20 FS","SI20UBH5-20",63,,65,,14,,15,,34,2200,"HK1003 -Blackpoint D2 - Rev.0E DD30092021"
1-5499,SI20UBH2-97,"BD - BA10 COMMENCEMENT OF WORK CONCRETE 20UBH01",5121,"HK1003-Rev.0E-3",TT_FinMile,"55902",-,-,-,0,TK_NotStart,19/11/2021,,19/11/2021,,"SI20UBH2-95 FS","SI20UBH2-95","SI20UBH5-10 FS","SI20UBH5-10",67,,67,,15,,15,,39,2152,"HK1003 -Blackpoint D2 - Rev.0E DD30092021"
1-5500,SI20UHX2-45,"DETAIL DESIGN BARBENDING STRUCTURE 20UHX (if required)",5121,"HK1003-Rev.0E-3",TT_Task,"55902",-,-,-,0,TK_NotStart,06/01/2022,,26/01/2022,,"SI20UHX2-35 FF","SI20UHX2-35","SI20UHX5-05 FS","SI20UHX5-05",74,,77,,17,,18,,44,3056,"HK1003 -Blackpoint D2 - Rev.0E DD30092021"
1-5501,SI20UVM2-86,"DETAIL DESIGN BARBENDING STRUCTURE  20UVM01",5121,"HK1003-Rev.0E-3",TT_Task,"55902",-,-,-,0,TK_NotStart,01/10/2021,,21/10/2021,,"SI20UVM2-80 FS","SI20UVM2-80","SI20UVM5-05 FS","SI20UVM5-05",60,,63,,14,,14,,31,2416,"HK1003 -Blackpoint D2 - Rev.0E DD30092021"
1-5502,SI20UVM2-87,"BD - BA10 COMMENCEMENT OF WORK CONCRETE 20UVM01",5121,"HK1003-Rev.0E-3",TT_FinMile,"55902",-,-,-,0,TK_NotStart,04/11/2021,,04/11/2021,,"SI20UVM2-85 FS","SI20UVM2-85","SI20UVM5-11 FS","SI20UVM5-11",65,,65,,15,,15,,37,2352,"HK1003 -Blackpoint D2 - Rev.0E DD30092021"
1-5503,SI--UBA2-108,"DETAIL DESIGN BARBENDING STRUCTURE UBA7xxx",5121,"HK1003-Rev.0E-3",TT_Task,"55902",-,-,-,0,TK_NotStart,01/10/2021,,21/10/2021,,"SI--UBA2-93 FS","SI--UBA2-93","SI20UBA5-7 FS","SI20UBA5-7",60,,63,,14,,14,,31,1248,"HK1003 -Blackpoint D2 - Rev.0E DD30092021"
1-5504,SI--UBA2-109,"BD - BA10 COMMENCEMENT OF WORK CONCRETE UBA7xxx",5121,"HK1003-Rev.0E-3",TT_FinMile,"55902",-,-,-,0,TK_NotStart,04/11/2021,,04/11/2021,,"SI--UBA2-94 FS","SI--UBA2-94","SI20UBA5-12 FS","SI20UBA5-12",65,,65,,15,,15,,37,1328,"HK1003 -Blackpoint D2 - Rev.0E DD30092021"
1-5505,SI--UBA2-110,"DETAIL DESIGN BARBENDING STRUCTURE UBA7910/7920",5121,"HK1003-Rev.0E-3",TT_Task,"55902",-,-,-,0,TK_NotStart,09/12/2021,,29/12/2021,,"SI--UBA2-96 FS","SI--UBA2-96","SI20UBA5-05 FS","SI20UBA5-05",70,,73,,16,,17,,42,1768,"HK1003 -Blackpoint D2 - Rev.0E DD30092021"
1-5506,SI--UBA2A76,"BD - BA10 COMMENCEMENT OF WORK CONCRETE UBA7910/7920",5121,"HK1003-Rev.0E-3",TT_FinMile,"55902",-,-,-,0,TK_NotStart,12/01/2022,,12/01/2022,,"SI--UBA2-97 FS","SI--UBA2-97","SI20UBA5-10 FS","SI20UBA5-10",75,,75,,17,,17,,45,1824,"HK1003 -Blackpoint D2 - Rev.0E DD30092021"
1-5507,SI20UTG2-95,"DETAIL DESIGN BARBENDING STRUCTURE 20UTG02",5121,"HK1003-Rev.0E-3",TT_Task,"55902",-,-,-,0,TK_NotStart,09/12/2021,,29/12/2021,,"SI20UTG2-62 FS","SI20UTG2-62","SI20UTG5-20 FS","SI20UTG5-20",70,,73,,16,,17,,42,3472,"HK1003 -Blackpoint D2 - Rev.0E DD30092021"
1-5508,SI20UTG2-96,"BD - BA10 COMMENCEMENT OF WORK CONCRETE 20UTG02",5121,"HK1003-Rev.0E-3",TT_FinMile,"55902",-,-,-,0,TK_NotStart,12/01/2022,,12/01/2022,,"SI20UTG2-63 FS","SI20UTG2-63","SI20UTG5-22 FS","SI20UTG5-22",75,,75,,17,,17,,45,3472,"HK1003 -Blackpoint D2 - Rev.0E DD30092021"
1-5509,SI20UGU2-67,"DETAIL DESIGN BARBENDING STRUCTURE 20UGU01",5121,"HK1003-Rev.0E-3",TT_Task,"55902",-,-,-,0,TK_NotStart,09/12/2021,,29/12/2021,,"SI20UGU2-56 FS","SI20UGU2-56","SI20UGU5-76 FS","SI20UGU5-76",70,,73,,16,,17,,42,1512,"HK1003 -Blackpoint D2 - Rev.0E DD30092021"
1-5510,SI20UGU2-68,"BD - BA10 COMMENCEMENT OF WORK CONCRETE 20UGU01",5121,"HK1003-Rev.0E-3",TT_FinMile,"55902",-,-,-,0,TK_NotStart,12/01/2022,,12/01/2022,,"SI20UGU2-57 FS","SI20UGU2-57","SI20UGU5-78 FS","SI20UGU5-78",75,,75,,17,,17,,45,1512,"HK1003 -Blackpoint D2 - Rev.0E DD30092021"
1-5511,SI--UBF2A77,"BD - BA10 COMMENCEMENT OF WORK CONCRETE 20UBE/UBF",5121,"HK1003-Rev.0E-3",TT_FinMile,"55902",-,-,-,0,TK_NotStart,10/11/2021,,10/11/2021,,"SI--UBF2-81 FS","SI--UBF2-81","SI20UBF5-10 FS","SI20UBF5-10",66,,66,,15,,15,,37,432,"HK1003 -Blackpoint D2 - Rev.0E DD30092021"
1-5512,SI20UBZ2-97,"DETAIL DESIGN BARBENDING STRUCTURE 20UBZ05",5121,"HK1003-Rev.0E-3",TT_Task,"55902",-,-,-,0,TK_NotStart,09/12/2021,,29/12/2021,,"SI20UBZ2-94 FS","SI20UBZ2-94","SI20UBZ5-73 FS","SI20UBZ5-73",70,,73,,16,,17,,42,1056,"HK1003 -Blackpoint D2 - Rev.0E DD30092021"
1-5513,SI20UBZ2-98,"BD - BA10 COMMENCEMENT OF WORK CONCRETE 20UBZ05",5121,"HK1003-Rev.0E-3",TT_FinMile,"55902",-,-,-,0,TK_NotStart,12/01/2022,,12/01/2022,,"SI20UBZ2-95 FS","SI20UBZ2-95","SI20UBZ5-75 FS","SI20UBZ5-75",75,,75,,17,,17,,45,2544,"HK1003 -Blackpoint D2 - Rev.0E DD30092021"
1-5514,SI20UTG2-97,"DETAIL DESIGN BARBENDING STRUCTURE 20UTG03",5121,"HK1003-Rev.0E-3",TT_Task,"55902",-,-,-,100,TK_Complete,31/07/2021,31/07/2021,20/08/2021,20/08/2021,"SI20UTG2-69 FS","SI20UTG2-69","SI20UTG5-30 FS","SI20UTG5-30",52,52,54,54,12,12,12,12,24,,"HK1003 -Blackpoint D2 - Rev.0E DD30092021"
1-5515,SI20UTG2-98,"BD - BA10 COMMENCEMENT OF WORK CONCRETE 20UTG03",5121,"HK1003-Rev.0E-3",TT_FinMile,"55902",-,-,-,0,TK_NotStart,12/01/2022,,12/01/2022,,"SI20UTG2-71 FS","SI20UTG2-71","SI20UTG5-32 FS","SI20UTG5-32",75,,75,,17,,17,,45,3472,"HK1003 -Blackpoint D2 - Rev.0E DD30092021"
1-5516,SI20UBD2-85,"DETAIL DESIGN BARBENDING- 20UBD01/02",5121,"HK1003-Rev.0E-3",TT_Task,"55902",-,-,-,0,TK_NotStart,09/12/2021,,29/12/2021,,"SI20UBD2-25 FS","SI20UBD2-25","SI20UBD5-05 FS","SI20UBD5-05",70,,73,,16,,17,,42,2032,"HK1003 -Blackpoint D2 - Rev.0E DD30092021"
1-5517,SI20UBD2-86,"BD - BA10 COMMENCEMENT OF WORK CONCRETE 20UBD01/02",5121,"HK1003-Rev.0E-3",TT_FinMile,"55902",-,-,-,0,TK_NotStart,12/01/2022,,12/01/2022,,"SI20UBD2-30 FS","SI20UBD2-30","SI20UBD5-10 FS","SI20UBD5-10",75,,75,,17,,17,,45,2032,"HK1003 -Blackpoint D2 - Rev.0E DD30092021"
1-5518,SI20UBX2-82,"DETAIL DESIGN BARBENDING STRUCTURE 20UBX/20UBG03",5121,"HK1003-Rev.0E-3",TT_Task,"55902",-,-,-,0,TK_NotStart,29/12/2021,,18/01/2022,,"SI20UBX2-30 FS","SI20UBX2-30","SI20UBX5-05 FS","SI20UBX5-05",73,,76,,17,,17,,43,1696,"HK1003 -Blackpoint D2 - Rev.0E DD30092021"
1-5519,SI--UBX2A76,"BD - BA10 COMMENCEMENT OF WORK CONCRETE 20UBX/20UBG03",5121,"HK1003-Rev.0E-3",TT_FinMile,"55902",-,-,-,100,TK_Complete,02/08/2021,02/08/2021,02/08/2021,02/08/2021,"SI20UBX2-35 FS","SI20UBX2-35","SI20UBX5-10 FS","SI20UBX5-10",52,52,52,52,12,12,12,12,24,,"HK1003 -Blackpoint D2 - Rev.0E DD30092021"
1-5520,SI20UBN2-111,"DETAIL DESIGN BARBENDING STRUCTURE 20UBN",5121,"HK1003-Rev.0E-3",TT_Task,"55902",-,-,-,0,TK_NotStart,22/04/2022,,12/05/2022,,"SI20UBN2-30 FS","SI20UBN2-30","SI20UBN5-5.00 FS","SI20UBN5-5.00",89,,92,,20,,21,,59,952,"HK1003 -Blackpoint D2 - Rev.0E DD30092021"
1-5521,SI20UBY2-68,"DETAIL DESIGN BARBENDING STRUCTURE UBY02",5121,"HK1003-Rev.0E-3",TT_Task,"55902",-,-,-,0,TK_NotStart,19/02/2022,,11/03/2022,,"SI20UBY2-46 FS","SI20UBY2-46","SI20UBY5-49 FS","SI20UBY5-49",81,,83,,18,,19,,50,2032,"HK1003 -Blackpoint D2 - Rev.0E DD30092021"
1-5522,SI20UBY2-69,"BD - BA10 COMMENCEMENT OF WORK CONCRETE UBY02",5121,"HK1003-Rev.0E-3",TT_FinMile,"55902",-,-,-,0,TK_NotStart,26/01/2022,,26/01/2022,,"SI20UBY2-47 FS","SI20UBY2-47","SI20UBY5-51 FS","SI20UBY5-51",77,,77,,18,,18,,47,2496,"HK1003 -Blackpoint D2 - Rev.0E DD30092021"
1-5523,SI20UBZ2-99,"DETAIL DESIGN BARBENDING STRUCTURE 20UBZ04",5121,"HK1003-Rev.0E-3",TT_Task,"55902",-,-,-,0,TK_NotStart,09/12/2021,,29/12/2021,,"SI20UBZ2-78 FS","SI20UBZ2-78","SI20UBZ5-65 FS","SI20UBZ5-65",70,,73,,16,,17,,42,1688,"HK1003 -Blackpoint D2 - Rev.0E DD30092021"
1-5524,SI20UBZ2-100,"BD - BA10 COMMENCEMENT OF WORK CONCRETE 20UBZ04",5121,"HK1003-Rev.0E-3",TT_FinMile,"55902",-,-,-,0,TK_NotStart,26/01/2022,,26/01/2022,,"SI20UBZ2-79 FS","SI20UBZ2-79","SI20UBZ5-67 FS","SI20UBZ5-67",77,,77,,18,,18,,47,1520,"HK1003 -Blackpoint D2 - Rev.0E DD30092021"
1-5525,SI20UBY2-70,"DETAIL DESIGN BARBENDING STRUCTURE UBY01",5121,"HK1003-Rev.0E-3",TT_Task,"55902",-,-,-,0,TK_NotStart,18/12/2021,,07/01/2022,,"SI20UBY2-30 FS","SI20UBY2-30","SI20UBY5-06 FS","SI20UBY5-06",72,,74,,16,,17,,43,1320,"HK1003 -Blackpoint D2 - Rev.0E DD30092021"
1-5526,SI20UBY2-71,"BD - BA10 COMMENCEMENT OF WORK CONCRETE",5121,"HK1003-Rev.0E-3",TT_FinMile,"55902",-,-,-,0,TK_NotStart,14/01/2022,,14/01/2022,,"SI20UBY2-35 FS","SI20UBY2-35","SI20UBY5-10 FS","SI20UBY5-10",75,,75,,17,,17,,45,1376,"HK1003 -Blackpoint D2 - Rev.0E DD30092021"
1-5527,SI20UBZ2-101,"DETAIL DESIGN BARBENDING STRUCTURE 20UBZ01",5121,"HK1003-Rev.0E-3",TT_Task,"55902",-,-,-,0,TK_NotStart,09/12/2021,,29/12/2021,,"SI20UBZ2-70 FS","SI20UBZ2-70","SI20UBZ5-61 FS","SI20UBZ5-61",70,,73,,16,,17,,42,1056,"HK1003 -Blackpoint D2 - Rev.0E DD30092021"
1-5528,SI20UBZ2-102,"BD - BA10 COMMENCEMENT OF WORK CONCRETE 20UBZ01",5121,"HK1003-Rev.0E-3",TT_FinMile,"55902",-,-,-,0,TK_NotStart,12/01/2022,,12/01/2022,,"SI20UBZ2-71 FS","SI20UBZ2-71","SI20UBZ5-63 FS","SI20UBZ5-63",75,,75,,17,,17,,45,1056,"HK1003 -Blackpoint D2 - Rev.0E DD30092021"
1-5529,SI20ULY2-81,"DETAIL DESIGN BARBENDING STRUCTURE 20ULY01",5121,"HK1003-Rev.0E-3",TT_Task,"55902",-,-,-,0,TK_NotStart,09/12/2021,,29/12/2021,,"SI20ULY2-30 FS","SI20ULY2-30","SI20ULY5-45 FS","SI20ULY5-45",70,,73,,16,,17,,42,2368,"HK1003 -Blackpoint D2 - Rev.0E DD30092021"
1-5530,SI20ULY2-82,"BD - BA10 COMMENCEMENT OF WORK CONCRETE 20ULY01",5121,"HK1003-Rev.0E-3",TT_FinMile,"55902",-,-,-,0,TK_NotStart,05/01/2022,,05/01/2022,,"SI20ULY2-35 FS","SI20ULY2-35","SI20ULY5-50 FS","SI20ULY5-50",74,,74,,17,,17,,44,2424,"HK1003 -Blackpoint D2 - Rev.0E DD30092021"
1-5531,SI20UBA2C79,"DETAIL DESIGN BARBENDING STRUCTURE 20UBA8110/20",5121,"HK1003-Rev.0E-3",TT_Task,"55902",-,-,-,0,TK_NotStart,13/01/2022,,02/02/2022,,"SI--UBA2-102 FS","SI--UBA2-102","SI20UBA5-59 FS","SI20UBA5-59",75,,78,,17,,18,,45,1936,"HK1003 -Blackpoint D2 - Rev.0E DD30092021"
1-5532,SI20UBA2G79,"BD - BA10 COMMENCEMENT OF WORK CONCRETE 20UBA8110/20",5121,"HK1003-Rev.0E-3",TT_FinMile,"55902",-,-,-,0,TK_NotStart,16/02/2022,,16/02/2022,,"SI--UBA2-103 FS","SI--UBA2-103","SI20UBA5-11 FS","SI20UBA5-11",80,,80,,18,,18,,50,1936,"HK1003 -Blackpoint D2 - Rev.0E DD30092021"
1-5533,SI20UBD2E93,"DETAIL DESIGN BARBENDING STRUCTURE 20UBD03/04",5121,"HK1003-Rev.0E-3",TT_Task,"55902",-,-,-,0,TK_NotStart,15/12/2021,,04/01/2022,,"SI20UBD2E91 FS","SI20UBD2E91","SI20UBD5-55 FS","SI20UBD5-55",71,,74,,16,,17,,42,2368,"HK1003 -Blackpoint D2 - Rev.0E DD30092021"
1-5534,SI20UBD2E94,"BD - BA10 COMMENCEMENT OF WORK CONCRETE 20UBD03/04",5121,"HK1003-Rev.0E-3",TT_FinMile,"55902",-,-,-,0,TK_NotStart,18/01/2022,,18/01/2022,,"SI20UBD2E92 FS","SI20UBD2E92","SI20UBD5-11 FS","SI20UBD5-11",76,,76,,17,,17,,46,2368,"HK1003 -Blackpoint D2 - Rev.0E DD30092021"
1-5535,SI20UBY2-72,"DETAIL DESIGN BARBENDING STRUCTURE UBY03",5121,"HK1003-Rev.0E-3",TT_Task,"55902",-,-,-,0,TK_NotStart,18/12/2021,,07/01/2022,,"SI20UBY2-54 FS","SI20UBY2-54","SI20UBY5-57 FS","SI20UBY5-57",72,,74,,16,,17,,43,2200,"HK1003 -Blackpoint D2 - Rev.0E DD30092021"
1-5536,SI20UBY2-73,"BD - BA10 COMMENCEMENT OF WORK CONCRETE UBY03",5121,"HK1003-Rev.0E-3",TT_FinMile,"55902",-,-,-,0,TK_NotStart,21/01/2022,,21/01/2022,,"SI20UBY2-55 FS","SI20UBY2-55","SI20UBY5-59 FS","SI20UBY5-59",76,,76,,17,,17,,46,2200,"HK1003 -Blackpoint D2 - Rev.0E DD30092021"
1-5537,SI20UTG2-99,"DETAIL DESIGN BARBENDING STRUCTURE 20UTG05",5121,"HK1003-Rev.0E-3",TT_Task,"55902",-,-,-,0,TK_NotStart,20/12/2021,,09/01/2022,,"SI20UTG2-78 FS","SI20UTG2-78","SI20UTG5-50 FS","SI20UTG5-50",72,,75,,16,,17,,43,3384,"HK1003 -Blackpoint D2 - Rev.0E DD30092021"
1-5538,SI20UTG2-100,"BD - BA10 COMMENCEMENT OF WORK CONCRETE 20UTG05",5121,"HK1003-Rev.0E-3",TT_FinMile,"55902",-,-,-,0,TK_NotStart,23/01/2022,,23/01/2022,,"SI20UTG2-79 FS","SI20UTG2-79","SI20UTG5-52 FS","SI20UTG5-52",77,,77,,18,,18,,46,3384,"HK1003 -Blackpoint D2 - Rev.0E DD30092021"
1-5539,SI20UBZ2-103,"DETAIL DESIGN BARBENDING STRUCTURE 20UBZ02",5121,"HK1003-Rev.0E-3",TT_Task,"55902",-,-,-,0,TK_NotStart,16/12/2021,,05/01/2022,,"SI20UBZ2-86 FS","SI20UBZ2-86","SI20UBZ5-69 FS","SI20UBZ5-69",71,,74,,16,,17,,42,1880,"HK1003 -Blackpoint D2 - Rev.0E DD30092021"
1-5540,SI20UBZ2-104,"BD - BA10 COMMENCEMENT OF WORK CONCRETE 20UBZ02",5121,"HK1003-Rev.0E-3",TT_FinMile,"55902",-,-,-,0,TK_NotStart,12/01/2022,,12/01/2022,,"SI20UBZ2-87 FS","SI20UBZ2-87","SI20UBZ5-71 FS","SI20UBZ5-71",75,,75,,17,,17,,45,1936,"HK1003 -Blackpoint D2 - Rev.0E DD30092021"
1-5541,SI20UGU2-69,"DETAIL DESIGN BARBENDING STRUCTURE 20UGU02",5121,"HK1003-Rev.0E-3",TT_Task,"55902",-,-,-,0,TK_NotStart,14/01/2022,,03/02/2022,,"SI20UGU2-64 FS","SI20UGU2-64","SI20UGU5-82 FS","SI20UGU5-82",75,,78,,17,,18,,45,3192,"HK1003 -Blackpoint D2 - Rev.0E DD30092021"
1-5542,SI20UGU2-70,"BD - BA10 COMMENCEMENT OF WORK CONCRETE 20UGU02",5121,"HK1003-Rev.0E-3",TT_FinMile,"55902",-,-,-,0,TK_NotStart,17/02/2022,,17/02/2022,,"SI20UGU2-65 FS","SI20UGU2-65","SI20UGU5-84 FS","SI20UGU5-84",80,,80,,18,,18,,50,3192,"HK1003 -Blackpoint D2 - Rev.0E DD30092021"
1-5543,SI20UBY2-74,"DETAIL DESIGN BARBENDING STRUCTURE UBY04/05",5121,"HK1003-Rev.0E-3",TT_Task,"55902",-,-,-,0,TK_NotStart,14/01/2022,,03/02/2022,,"SI20UBY2-62 FS","SI20UBY2-62","SI20UBY5-53 FS,SI20UBY4-53 FS","SI20UBY5-53,SI20UBY4-53",75,,78,,17,,18,,45,696,"HK1003 -Blackpoint D2 - Rev.0E DD30092021"
1-5544,SI20UBY2-75,"BD - BA10 COMMENCEMENT OF WORK CONCRETE UBY04/05",5121,"HK1003-Rev.0E-3",TT_FinMile,"55902",-,-,-,0,TK_NotStart,17/02/2022,,17/02/2022,,"SI20UBY2-63 FS","SI20UBY2-63","SI20UBY4-55 FS,SI20UBY5-55 FS","SI20UBY4-55,SI20UBY5-55",80,,80,,18,,18,,50,760,"HK1003 -Blackpoint D2 - Rev.0E DD30092021"
1-5545,SI20UEN2-108,"DETAIL DESIGN BARBENDING STRUCTURE 01UEN",5121,"HK1003-Rev.0E-3",TT_Task,"55902",-,-,-,0,TK_NotStart,10/12/2021,,30/12/2021,,"SI20UEN2-100 FS","SI20UEN2-100","SI20UEN5-19.00 FS","SI20UEN5-19.00",70,,73,,16,,17,,42,1408,"HK1003 -Blackpoint D2 - Rev.0E DD30092021"
1-5546,SI20UEN2-109,"BD - BA10 COMMENCEMENT OF WORK CONCRETE 01UEN",5121,"HK1003-Rev.0E-3",TT_FinMile,"55902",-,-,-,0,TK_NotStart,13/01/2022,,13/01/2022,,"SI20UEN2-105 FS","SI20UEN2-105","SI20UEN5-21 FS","SI20UEN5-21",75,,75,,17,,17,,45,1408,"HK1003 -Blackpoint D2 - Rev.0E DD30092021"
1-5547,SI20UEY2-89,"DETAIL DESIGN BARBENDING STRUCTURE 20UEY03-05",5121,"HK1003-Rev.0E-3",TT_Task,"55902",-,-,-,0,TK_NotStart,09/12/2021,,29/12/2021,,"SI20UEY2-55 FS","SI20UEY2-55","SI20UEY5-06 FS","SI20UEY5-06",70,,73,,16,,17,,42,1416,"HK1003 -Blackpoint D2 - Rev.0E DD30092021"
1-5548,SI20UEY2-90,"BD - BA10 COMMENCEMENT OF WORK CONCRETE20UEY03-05",5121,"HK1003-Rev.0E-3",TT_FinMile,"55902",-,-,-,0,TK_NotStart,12/01/2022,,12/01/2022,,"SI20UEY2-62 FS","SI20UEY2-62","SI20UEY5-10 FS","SI20UEY5-10",75,,75,,17,,17,,45,1416,"HK1003 -Blackpoint D2 - Rev.0E DD30092021"
1-5549,SI20UEY2-91,"DETAIL DESIGN BARBENDING STRUCTURE 20UEY02",5121,"HK1003-Rev.0E-3",TT_Task,"55902",-,-,-,0,TK_NotStart,09/12/2021,,29/12/2021,,"SI20UEY2-85 FS","SI20UEY2-85","SI20UEY5-101 FS","SI20UEY5-101",70,,73,,16,,17,,42,1136,"HK1003 -Blackpoint D2 - Rev.0E DD30092021"
1-5550,SI20UEY2-92,"BD - BA10 COMMENCEMENT OF WORK CONCRETE20UEY01",5121,"HK1003-Rev.0E-3",TT_FinMile,"55902",-,-,-,0,TK_NotStart,29/10/2021,,29/10/2021,,"SI20UEY2-79 FS","SI20UEY2-79","SI20UEY5-95 FS","SI20UEY5-95",64,,64,,15,,15,,36,408,"HK1003 -Blackpoint D2 - Rev.0E DD30092021"
1-5551,SI20UEY2-93,"BD - BA10 COMMENCEMENT OF WORK CONCRETE20UEY02",5121,"HK1003-Rev.0E-3",TT_FinMile,"55902",-,-,-,0,TK_NotStart,12/01/2022,,12/01/2022,,"SI20UEY2-87 FS","SI20UEY2-87","SI20UEY5-103 FS","SI20UEY5-103",75,,75,,17,,17,,45,1192,"HK1003 -Blackpoint D2 - Rev.0E DD30092021"
1-5552,SI20UEY2-94,"DETAIL DESIGN BARBENDING STRUCTURE 20UEY01",5121,"HK1003-Rev.0E-3",TT_Task,"55902",-,-,-,24,TK_Active,25/09/2021,25/09/2021,15/10/2021,,"SI20UEY2-66 FS","SI20UEY2-66","SI20UEY5-85 FS","SI20UEY5-85",60,60,62,,14,14,14,,30,408,"HK1003 -Blackpoint D2 - Rev.0E DD30092021"
1-5553,SI--UMY2-79,"DETAIL DESIGN BARBENDING STRUCTURE 20ULY/UMY",5121,"HK1003-Rev.0E-3",TT_Task,"55902",-,-,-,0,TK_NotStart,01/10/2021,,21/10/2021,,"SI20UMY2-55 FS","SI20UMY2-55","SI20UMY5-05 FS","SI20UMY5-05",60,,63,,14,,14,,31,480,"HK1003 -Blackpoint D2 - Rev.0E DD30092021"
1-5554,SI--UMY2-80,"BD - BA10 COMMENCEMENT OF WORK CONCRETE 20ULY/UMY",5121,"HK1003-Rev.0E-3",TT_FinMile,"55902",-,-,-,0,TK_NotStart,04/11/2021,,04/11/2021,,"SI20UMY2-60 FS","SI20UMY2-60","SI20UMY5-10 FS","SI20UMY5-10",65,,65,,15,,15,,37,480,"HK1003 -Blackpoint D2 - Rev.0E DD30092021"
1-5555,SI20UBA2C-81,"DETAIL DESIGN BARBENDING STRUCTURE 01UBA9010/20",5121,"HK1003-Rev.0E-3",TT_Task,"55902",-,-,-,0,TK_NotStart,13/01/2022,,02/02/2022,,"SI20UBA2C-40 FS","SI20UBA2C-40","SI20UBA5C-5 FS","SI20UBA5C-5",75,,78,,17,,18,,45,1560,"HK1003 -Blackpoint D2 - Rev.0E DD30092021"
1-5556,SI20UBA2C-82,"BD - BA10 COMMENCEMENT OF WORK CONCRETE 01UBA9010/20",5121,"HK1003-Rev.0E-3",TT_FinMile,"55902",-,-,-,0,TK_NotStart,16/02/2022,,16/02/2022,,"SI20UBA2C-45 FS","SI20UBA2C-45","SI20UBA5C-15 FS","SI20UBA5C-15",80,,80,,18,,18,,50,1560,"HK1003 -Blackpoint D2 - Rev.0E DD30092021"
1-5557,SI20UTG2-101,"DETAIL DESIGN BARBENDING STRUCTURE 20UTG06",5121,"HK1003-Rev.0E-3",TT_Task,"55902",-,-,-,0,TK_NotStart,20/12/2021,,09/01/2022,,"SI20UTG2-86 FS","SI20UTG2-86","SI20UTG5-60 FS","SI20UTG5-60",72,,75,,16,,17,,43,3384,"HK1003 -Blackpoint D2 - Rev.0E DD30092021"
1-5558,SI20UTG2-102,"BD - BA10 COMMENCEMENT OF WORK CONCRETE 20UTG06",5121,"HK1003-Rev.0E-3",TT_FinMile,"55902",-,-,-,0,TK_NotStart,23/01/2022,,23/01/2022,,"SI20UTG2-87 FS","SI20UTG2-87","SI20UTG5-62 FS","SI20UTG5-62",77,,77,,18,,18,,46,3384,"HK1003 -Blackpoint D2 - Rev.0E DD30092021"
1-5559,CLP20ULZ2-105,"DETAIL DESIGN BARBENDING STRUCTURE 20ULZ02 (CLP Scope)",5121,"HK1003-Rev.0E-3",TT_Task,"55902",-,-,-,100,TK_Complete,29/04/2021,29/04/2021,19/05/2021,19/05/2021,"CLP20ULZ2-102 FS","CLP20ULZ2-102","CLP20ULZ5-77 FS","CLP20ULZ5-77",38,38,41,41,9,9,9,9,10,,"HK1003 -Blackpoint D2 - Rev.0E DD30092021"
1-5560,CLP20ULZ2-106,"BD - BA10 COMMENCEMENT OF WORK CONCRETE 20ULZ02 (CLP Scope)",5121,"HK1003-Rev.0E-3",TT_FinMile,"55902",-,-,-,100,TK_Complete,02/06/2021,02/06/2021,02/06/2021,02/06/2021,"CLP20ULZ2-103 FS","CLP20ULZ2-103","CLP20ULZ5-79 FS","CLP20ULZ5-79",43,43,43,43,10,10,10,10,15,,"HK1003 -Blackpoint D2 - Rev.0E DD30092021"
1-5561,SI20UBH2-98,"DETAIL DESIGN BARBENDING STRUCTURE 20UBH02",5121,"HK1003-Rev.0E-3",TT_Task,"55902",-,-,-,0,TK_NotStart,16/10/2021,,05/11/2021,,"SI20UBH2-91 FS","SI20UBH2-91","SI20UBH5-23 FS","SI20UBH5-23",63,,65,,14,,15,,34,3264,"HK1003 -Blackpoint D2 - Rev.0E DD30092021"
1-5562,SI20UBH2-99,"BD - BA10 COMMENCEMENT OF WORK CONCRETE 20UBH02",5121,"HK1003-Rev.0E-3",TT_FinMile,"55902",-,-,-,0,TK_NotStart,19/11/2021,,19/11/2021,,"SI20UBH2-92 FS","SI20UBH2-92","SI20UBH5-25 FS","SI20UBH5-25",67,,67,,15,,15,,39,3264,"HK1003 -Blackpoint D2 - Rev.0E DD30092021"
1-5563,CLP20UEZ2-112,"DETAIL DESIGN BARBENDING STRUCTURE 20UEZ02  (CLP Scope)",5121,"HK1003-Rev.0E-3",TT_Task,"55902",-,-,-,100,TK_Complete,29/04/2021,29/04/2021,19/05/2021,19/05/2021,"CLP20UEZ2-109 FS","CLP20UEZ2-109","CLP20UEZ5-81 FS","CLP20UEZ5-81",38,38,41,41,9,9,9,9,10,,"HK1003 -Blackpoint D2 - Rev.0E DD30092021"
1-5564,CLP20UEZ2-113,"BD - BA10 COMMENCEMENT OF WORK CONCRETE 20UEZ02  (CLP Scope)",5121,"HK1003-Rev.0E-3",TT_FinMile,"55902",-,-,-,100,TK_Complete,02/06/2021,02/06/2021,02/06/2021,02/06/2021,"CLP20UEZ2-110 FS","CLP20UEZ2-110","CLP20UEZ5-83 FS","CLP20UEZ5-83",43,43,43,43,10,10,10,10,15,,"HK1003 -Blackpoint D2 - Rev.0E DD30092021"
1-5565,SI20UQX2-41,"DETAIL DESIGN BARBENDING STRUCTURE 20UQX",5121,"HK1003-Rev.0E-3",TT_Task,"55902",-,-,-,0,TK_NotStart,09/12/2021,,29/12/2021,,"SI20UQX2-30 FS","SI20UQX2-30","SI20UQX5-45 FS","SI20UQX5-45",70,,73,,16,,17,,42,3088,"HK1003 -Blackpoint D2 - Rev.0E DD30092021"
1-5566,SI20UQX2-42,"BD - BA10 COMMENCEMENT OF WORK CONCRETE 20UQX",5121,"HK1003-Rev.0E-3",TT_FinMile,"55902",-,-,-,0,TK_NotStart,12/01/2022,,12/01/2022,,"SI20UQX2-35 FS","SI20UQX2-35","SI20UQX5-50 FS","SI20UQX5-50",75,,75,,17,,17,,45,3088,"HK1003 -Blackpoint D2 - Rev.0E DD30092021"
1-5567,SI20UQZ2-109,"DETAIL DESIGN BARBENDING CIVIL ADAPTION WORKS AT SCW PUMP HOUSE 20UQB",5121,"HK1003-Rev.0E-3",TT_Task,"55902",-,-,-,0,TK_NotStart,11/01/2022,,31/01/2022,,"SI20UQZ2-106 FS","SI20UQZ2-106","SI20UQZ5-158 FS","SI20UQZ5-158",75,,78,,17,,18,,45,600,"HK1003 -Blackpoint D2 - Rev.0E DD30092021"
1-5568,SI20UQZ2-110,"BD - BA10 COMMENCEMENT OF WORK CONCRETE CIVIL ADAPTION WORKS AT SCW PUMP HOUSE 20UQB",5121,"HK1003-Rev.0E-3",TT_FinMile,"55902",-,-,-,0,TK_NotStart,12/01/2022,,12/01/2022,,"SI20UQZ2-107 FS","SI20UQZ2-107","SI20UQZ5-159 FS","SI20UQZ5-159",75,,75,,17,,17,,45,864,"HK1003 -Blackpoint D2 - Rev.0E DD30092021"
1-5569,SI20UQY2-105,"DETAIL DESIGN BARBENDING STRUCTURE 20UQY01",5121,"HK1003-Rev.0E-3",TT_Task,"55902",-,-,-,0,TK_NotStart,09/12/2021,,29/12/2021,,"SI20UQY2-86 FS","SI20UQY2-86","SI20UQY5-146 FS","SI20UQY5-146",70,,73,,16,,17,,42,1592,"HK1003 -Blackpoint D2 - Rev.0E DD30092021"
1-5570,SI20UQY2-106,"BD - BA10 COMMENCEMENT OF WORK CONCRETE 20UQY01",5121,"HK1003-Rev.0E-3",TT_FinMile,"55902",-,-,-,0,TK_NotStart,02/03/2022,,02/03/2022,,"SI20UQY2-87 FS","SI20UQY2-87","SI20UQY5-147 FS","SI20UQY5-147",82,,82,,19,,19,,51,1200,"HK1003 -Blackpoint D2 - Rev.0E DD30092021"
1-5571,SI20UQY2-107,"DETAIL DESIGN BARBENDING STRUCTURE 20UQY02",5121,"HK1003-Rev.0E-3",TT_Task,"55902",-,-,-,0,TK_NotStart,09/12/2021,,29/12/2021,,"SI20UQY2-94 FS","SI20UQY2-94","SI20UQY5-150 FS","SI20UQY5-150",70,,73,,16,,17,,42,2456,"HK1003 -Blackpoint D2 - Rev.0E DD30092021"
1-5572,SI20UQY2-108,"BD - BA10 COMMENCEMENT OF WORK CONCRETE 20UQY02",5121,"HK1003-Rev.0E-3",TT_FinMile,"55902",-,-,-,0,TK_NotStart,12/01/2022,,12/01/2022,,"SI20UQY2-95 FS","SI20UQY2-95","SI20UQY5-151 FS","SI20UQY5-151",75,,75,,17,,17,,45,2704,"HK1003 -Blackpoint D2 - Rev.0E DD30092021"
1-5573,SI20UQY2-109,"DETAIL DESIGN BARBENDING STRUCTURE 20UQY03",5121,"HK1003-Rev.0E-3",TT_Task,"55902",-,-,-,0,TK_NotStart,09/12/2021,,29/12/2021,,"SI20UQY2-102 FS","SI20UQY2-102","SI20UQY5-154 FS","SI20UQY5-154",70,,73,,16,,17,,42,2512,"HK1003 -Blackpoint D2 - Rev.0E DD30092021"
1-5574,SI20UQZ2-111,"DETAIL DESIGN BARBENDING STRUCTURE 20UQZ",5121,"HK1003-Rev.0E-3",TT_Task,"55902",-,-,-,0,TK_NotStart,09/12/2021,,29/12/2021,,"SI20UQZ2-98 FS","SI20UQZ2-98","SI20UQZ5-154 FS","SI20UQZ5-154",70,,73,,16,,17,,42,1256,"HK1003 -Blackpoint D2 - Rev.0E DD30092021"
1-5575,SI20UQZ2-112,"BD - BA10 COMMENCEMENT OF WORK CONCRETE 20UQZ",5121,"HK1003-Rev.0E-3",TT_FinMile,"55902",-,-,-,0,TK_NotStart,12/01/2022,,12/01/2022,,"SI20UQZ2-99 FS","SI20UQZ2-99","SI20UQZ5-155 FS","SI20UQZ5-155",75,,75,,17,,17,,45,1256,"HK1003 -Blackpoint D2 - Rev.0E DD30092021"
1-5576,SI--BZP2-103,"DETAIL DESIGN CABLE SUPPORT SYSTEM 20UCA (FIRST SUBMISSION)",5121,"HK1003-Rev.0E-3",TT_Task,"55902",-,-,-,0,TK_NotStart,17/12/2021,,31/12/2021,,"SI--BZP2-102 SS","SI--BZP2-102","SI--BZP2-30 SS","SI--BZP2-30",71,,73,,16,,17,,42,296,"HK1003 -Blackpoint D2 - Rev.0E DD30092021"
1-5577,SI--M--2D21,"CLIENT TERMINAL POINTS DOCUMENTS",5121,"HK1003-Rev.0E-3",TT_Task,"55902",-,-,-,100,TK_Complete,15/01/2021,15/01/2021,10/04/2021,10/04/2021,"SI-----1-05 FS","SI-----1-05","SI20TPM1A2-5 FS,SI20TPM1B2-5 FS,SI20TPM2C2-5 FS,SI20TPM4A2-5 FS,SI20TPM5A2-5 FS,SI20TPM5B2-5 FS,SI20TPM6A2-5 FS,SI20TPM6B2-5 FS,SI20TPM7A2-5 FS,SI20TPM7B2-5 FS,SI20TPM8A2-5 FS,SI20TPM9A2-5 FS,SI20TPM9B2-5 FS,SI20TPM10A2-5 FS,SI20TPM13A2-5 FS,SI20TPM13B2-5 FS,SI20TPM14A2-5 FS,SI20TPM14B2-5 FS,SI20TPM15A2-5 FS,SI20TPM16A2-5 FS,SI20TPM17A2-5 FS,SI20TPM18A2-5 FS,SI20TPM19A2-5 FS,SI20TPM20A2-5 FS,SI20TPM26A2-5 FS,SI20TPM28A2-5 FS,SI20TPM29A2-5 FS,SI20TPF1A2-5 FS","SI20TPM1A2-5,SI20TPM1B2-5,SI20TPM2C2-5,SI20TPM4A2-5,SI20TPM5A2-5,SI20TPM5B2-5,SI20TPM6A2-5,SI20TPM6B2-5,SI20TPM7A2-5,SI20TPM7B2-5,SI20TPM8A2-5,SI20TPM9A2-5,SI20TPM9B2-5,SI20TPM10A2-5,SI20TPM13A2-5,SI20TPM13B2-5,SI20TPM14A2-5,SI20TPM14B2-5,SI20TPM15A2-5,SI20TPM16A2-5,SI20TPM17A2-5,SI20TPM18A2-5,SI20TPM19A2-5,SI20TPM20A2-5,SI20TPM26A2-5,SI20TPM28A2-5,SI20TPM29A2-5,SI20TPF1A2-5",23,23,36,36,5,5,8,8,2,,"HK1003 -Blackpoint D2 - Rev.0E DD30092021"
1-5578,SI20MA-6A62,"(RFS) READY FOR SHIPMENT TO SITE ST HP/IP/LP VALVES",5121,"HK1003-Rev.0E-3",TT_FinMile,"55902",-,-,-,0,TK_NotStart,29/04/2022,,29/04/2022,,"SP20MA-3-85 FS,SP20MA-3-85 FF,SP20MA-4-12 FS","SP20MA-3-85,SP20MA-3-85,SP20MA-4-12","SI20MA-4-43 FS","SI20MA-4-43",90,,90,,21,,21,,60,1064,"HK1003 -Blackpoint D2 - Rev.0E DD30092021"
1-5579,SI20MA-4-44,"(OTD-OS) ON SITE ST HP/IP/LP VALVES",5121,"HK1003-Rev.0E-3",TT_FinMile,"55902",-,-,-,0,TK_NotStart,24/06/2022,,24/06/2022,,"SI20MA-4-43 FS","SI20MA-4-43","SI20MA-6A35 FS","SI20MA-6A35",98,,98,,23,,23,,71,1064,"HK1003 -Blackpoint D2 - Rev.0E DD30092021"
1-5580,SI20MA-4-43,"TRANSPORT ST HP/IP/LP VALVES",5121,"HK1003-Rev.0E-3",TT_Task,"55902",-,-,-,0,TK_NotStart,30/04/2022,,24/06/2022,,"SI20MA-6A62 FS,SP20MA-4-12 FS","SI20MA-6A62,SP20MA-4-12","SI20MA-4-44 FS","SI20MA-4-44",91,,98,,21,,23,,60,1064,"HK1003 -Blackpoint D2 - Rev.0E DD30092021"
1-5581,SP20MA-3-85,"MANUFACTURING HP/IP/LP VALVES",5121,"HK1003-Rev.0E-3",TT_Task,"55902",-,-,-,37,TK_Active,14/06/2021,14/06/2021,01/04/2022,,"SP20MA-3-86 FS","SP20MA-3-86","SI20MA-6A62 FS,SI20MA-6A62 FF,SP20MA-3-87 FS","SI20MA-6A62,SI20MA-6A62,SP20MA-3-87",45,45,86,,10,10,20,,17,1064,"HK1003 -Blackpoint D2 - Rev.0E DD30092021"
1-5582,SP20MA-3-86,"ENGINEERING / PROCUREMENT ST HP/IP/LP VALVES",5121,"HK1003-Rev.0E-3",TT_Task,"55902",-,-,-,100,TK_Complete,15/01/2021,15/01/2021,13/06/2021,13/06/2021,"SP20MA-2-81 FS","SP20MA-2-81","SP20MA-3-85 FS","SP20MA-3-85",23,23,45,45,5,5,10,10,2,,"HK1003 -Blackpoint D2 - Rev.0E DD30092021"
1-5583,SP20MA-4-12,"LOGISTICS AND CUSTOMS PREPARATION HP/IP/LP VALVES",5121,"HK1003-Rev.0E-3",TT_Task,"55902",-,-,-,0,TK_NotStart,02/04/2022,,29/04/2022,,"SP20MA-3-87 FS","SP20MA-3-87","SI20MA-4-43 FS,SI20MA-6A62 FS","SI20MA-4-43,SI20MA-6A62",87,,90,,20,,21,,55,1064,"HK1003 -Blackpoint D2 - Rev.0E DD30092021"
1-5584,SP20MA-3-87,"TIMES OF COMPLETION (FINAL DATA IN KANLOG) HP/IP/LP VALVES",5121,"HK1003-Rev.0E-3",TT_FinMile,"55902",-,-,-,0,TK_NotStart,01/04/2022,,01/04/2022,,"SP20MA-3-85 FS","SP20MA-3-85","SP20MA-4-12 FS","SP20MA-4-12",86,,86,,20,,20,,55,1064,"HK1003 -Blackpoint D2 - Rev.0E DD30092021"
1-5585,SI--UMC2A86,"CONSTRUCTION DRWING TS FOUND. 20UMC READY",5121,"HK1003-Rev.0E-3",TT_Mile,"55902",-,-,-,100,TK_Complete,15/06/2021,15/06/2021,15/06/2021,15/06/2021,"SI--UMC2A83 SS,SI--UMC2A04 FS","SI--UMC2A83,SI--UMC2A04","SI20UMC5Z46 FS","SI20UMC5Z46",45,45,45,45,10,10,10,10,17,,"HK1003 -Blackpoint D2 - Rev.0E DD30092021"
1-5586,SI20PAD3-100,"PROCUREMENT MATERIAL COOLING TOWER - FILL - 20PAD",5121,"HK1003-Rev.0E-3",TT_Task,"55902",-,-,-,95,TK_Active,06/07/2021,06/07/2021,04/10/2021,,"SI20PAD3-24 FS","SI20PAD3-24","SI20PAD3-102 FS","SI20PAD3-102",48,48,61,,11,11,14,,21,64,"HK1003 -Blackpoint D2 - Rev.0E DD30092021"
1-5587,SI20PAD3-101,"PROCUREMENT MATERIAL COOLING TOWER - FRP - 20PAD",5121,"HK1003-Rev.0E-3",TT_Task,"55902",-,-,-,95,TK_Active,06/07/2021,06/07/2021,04/10/2021,,"SI20PAD3-24 FS","SI20PAD3-24","SI20PAD3-103 FS","SI20PAD3-103",48,48,61,,11,11,14,,21,64,"HK1003 -Blackpoint D2 - Rev.0E DD30092021"
1-5588,SI20PAD3-102,"FABRICATION DESIGN COOLING TOWER - FILL - 20PAD",5121,"HK1003-Rev.0E-3",TT_Task,"55902",-,-,-,0,TK_NotStart,05/10/2021,,03/01/2022,,"SI20PAD3-100 FS","SI20PAD3-100","SI20PAD3-81 FS","SI20PAD3-81",61,,74,,14,,17,,31,64,"HK1003 -Blackpoint D2 - Rev.0E DD30092021"
1-5589,SI20PAD3-103,"FABRICATION DESIGN COOLING TOWER - FRP - 20PAD",5121,"HK1003-Rev.0E-3",TT_Task,"55902",-,-,-,0,TK_NotStart,05/10/2021,,03/01/2022,,"SI20PAD3-101 FS","SI20PAD3-101","SI20PAD3-82 FS","SI20PAD3-82",61,,74,,14,,17,,31,64,"HK1003 -Blackpoint D2 - Rev.0E DD30092021"
1-5590,SI20PAD3-104,"PROCUREMENT MATERIAL COOLING TOWER - NOISE ATT / PIPING / DRIFT ELIM - 20PAD",5121,"HK1003-Rev.0E-3",TT_Task,"55902",-,-,-,95,TK_Active,06/07/2021,06/07/2021,04/10/2021,,"SI20PAD3-24 FS","SI20PAD3-24","SI20PAD3-106 FS","SI20PAD3-106",48,48,61,,11,11,14,,21,384,"HK1003 -Blackpoint D2 - Rev.0E DD30092021"
1-5591,SI20PAD3-105,"PROCUREMENT MATERIAL COOLING TOWER - WALKWAY - 20PAD",5121,"HK1003-Rev.0E-3",TT_Task,"55902",-,-,-,95,TK_Active,06/07/2021,06/07/2021,04/10/2021,,"SI20PAD3-24 FS","SI20PAD3-24","SI20PAD3-107 FS","SI20PAD3-107",48,48,61,,11,11,14,,21,384,"HK1003 -Blackpoint D2 - Rev.0E DD30092021"
1-5592,SI20PAD3-106,"FABRICATION DESIGN COOLING TOWER - NOISE ATT / PIPING / DRIFT ELIM - 20PAD",5121,"HK1003-Rev.0E-3",TT_Task,"55902",-,-,-,0,TK_NotStart,05/10/2021,,03/01/2022,,"SI20PAD3-104 FS","SI20PAD3-104","SI20PAD3-83 FS","SI20PAD3-83",61,,74,,14,,17,,31,384,"HK1003 -Blackpoint D2 - Rev.0E DD30092021"
1-5593,SI20PAD3-107,"FABRICATION DESIGN COOLING TOWER - WALKWAY - 20PAD",5121,"HK1003-Rev.0E-3",TT_Task,"55902",-,-,-,0,TK_NotStart,05/10/2021,,03/01/2022,,"SI20PAD3-105 FS","SI20PAD3-105","SI20PAD3-84 FS","SI20PAD3-84",61,,74,,14,,17,,31,384,"HK1003 -Blackpoint D2 - Rev.0E DD30092021"
1-5594,SI20PAD3-108,"PROCUREMENT MATERIAL COOLING TOWER - DRY EQUIPMENT & ELECTRICAL - 20PAD",5121,"HK1003-Rev.0E-3",TT_Task,"55902",-,-,-,95,TK_Active,06/07/2021,06/07/2021,04/10/2021,,"SI20PAD3-24 FS","SI20PAD3-24","SI20PAD3-109 FS","SI20PAD3-109",48,48,61,,11,11,14,,21,936,"HK1003 -Blackpoint D2 - Rev.0E DD30092021"
1-5595,SI20PAD3-109,"FABRICATION DESIGN COOLING TOWER - DRY EQUIPMENT & ELECTRICAL - 20PAD",5121,"HK1003-Rev.0E-3",TT_Task,"55902",-,-,-,0,TK_NotStart,05/10/2021,,03/01/2022,,"SI20PAD3-108 FS","SI20PAD3-108","SI20PAD3-85 FS","SI20PAD3-85",61,,74,,14,,17,,31,936,"HK1003 -Blackpoint D2 - Rev.0E DD30092021"
1-5596,SI20PAD3-110,"PROCUREMENT MATERIAL COOLING TOWER - MECH. EQUIPMENT & FANSTACK - 20PAD",5121,"HK1003-Rev.0E-3",TT_Task,"55902",-,-,-,61,TK_Active,06/07/2021,06/07/2021,22/11/2021,,"SI20PAD3-24 FS","SI20PAD3-24","SI20PAD3-111 FS","SI20PAD3-111",48,48,68,,11,11,15,,21,72,"HK1003 -Blackpoint D2 - Rev.0E DD30092021"
1-5597,SI20PAD3-111,"FABRICATION DESIGN COOLING TOWER - MECH. EQUIPMENT & FANSTACK - 20PAD",5121,"HK1003-Rev.0E-3",TT_Task,"55902",-,-,-,0,TK_NotStart,23/11/2021,,28/03/2022,,"SI20PAD3-110 FS","SI20PAD3-110","SI20PAD3-86 FS","SI20PAD3-86",68,,86,,15,,20,,39,72,"HK1003 -Blackpoint D2 - Rev.0E DD30092021"
1-5598,SI20PAD3-112,"PROCUREMENT MATERIAL COOLING TOWER - VACUUM SKID & PIPING - 20PAD",5121,"HK1003-Rev.0E-3",TT_Task,"55902",-,-,-,82,TK_Active,06/07/2021,06/07/2021,18/10/2021,,"SI20PAD3-24 FS","SI20PAD3-24","SI20PAD3-113 FS","SI20PAD3-113",48,48,63,,11,11,14,,21,560,"HK1003 -Blackpoint D2 - Rev.0E DD30092021"
1-5599,SI20PAD3-113,"FABRICATION DESIGN COOLING TOWER - VACUUM SKID & PIPING - 20PAD",5121,"HK1003-Rev.0E-3",TT_Task,"55902",-,-,-,0,TK_NotStart,19/10/2021,,31/01/2022,,"SI20PAD3-112 FS","SI20PAD3-112","SI20PAD3-87 FS","SI20PAD3-87",63,,78,,14,,18,,35,560,"HK1003 -Blackpoint D2 - Rev.0E DD30092021"
1-5600,SP20MAD3-81,"DETAIL DESIGN ST BEARINGS 20MAD",5121,"HK1003-Rev.0E-3",TT_Task,"55902",-,-,-,100,TK_Complete,12/02/2021,12/02/2021,27/05/2021,27/05/2021,"SP20MA-2-81 FS","SP20MA-2-81","SP20MAD3-82 FS","SP20MAD3-82",27,27,42,42,6,6,9,9,4,,"HK1003 -Blackpoint D2 - Rev.0E DD30092021"
1-5601,SP20MAD3-82,"PROCUREMENT MATERIAL / SUBCONTRACT ST BEARINGS 20MAD",5121,"HK1003-Rev.0E-3",TT_Task,"55902",-,-,-,100,TK_Complete,28/05/2021,28/05/2021,09/09/2021,09/09/2021,"SP20MAD3-81 FS","SP20MAD3-81","SP20MAD3-25 FS,SP20MAD3-25 FF","SP20MAD3-25,SP20MAD3-25",42,42,57,57,10,10,13,13,14,,"HK1003 -Blackpoint D2 - Rev.0E DD30092021"
1-5602,SP20MA-3-88,"DETAIL DESIGN  STEAM TURBINE (HI-L)",5121,"HK1003-Rev.0E-3",TT_Task,"55902",-,-,-,100,TK_Complete,15/01/2021,15/01/2021,29/04/2021,29/04/2021,"SP20MA-2-81 FS","SP20MA-2-81","SP20MA-3-89 FS","SP20MA-3-89",23,23,38,38,5,5,9,9,2,,"HK1003 -Blackpoint D2 - Rev.0E DD30092021"
1-5603,SP20MA-3-89,"PROCUREMENT MATERIAL / SUBCONTRACT STEAM TURBINE (HI-L)",5121,"HK1003-Rev.0E-3",TT_Task,"55902",-,-,-,100,TK_Complete,30/04/2021,30/04/2021,12/08/2021,12/08/2021,"SP20MA-3-88 FS","SP20MA-3-88","SP20MA-3-25 FS,SP20MA-3D80 SS","SP20MA-3-25,SP20MA-3D80",38,38,53,53,9,9,12,12,10,,"HK1003 -Blackpoint D2 - Rev.0E DD30092021"
1-5604,SI20USX2-46,"(MS2) PRELIMINARY DESIGN INPUT  AVAILABLE 20USX",5121,"HK1003-Rev.0E-3",TT_FinMile,"55902",-,-,-,100,TK_Complete,31/05/2021,31/05/2021,31/05/2021,31/05/2021,"SI-----1-03 FS","SI-----1-03","SI20USX2-41 FS","SI20USX2-41",43,43,43,43,10,10,10,10,15,,"HK1003 -Blackpoint D2 - Rev.0E DD30092021"
1-5605,SI20UTG2S-141,"BASIC BUILDING DESIGN INCL. 3D MODEL 20UTG04",5121,"HK1003-Rev.0E-3",TT_Task,"55902",-,-,-,100,TK_Complete,31/08/2021,31/08/2021,20/09/2021,20/09/2021,"SI20UTG2S-42 FS","SI20UTG2S-42","SI20UTG2S-44 FS","SI20UTG2S-44",56,56,59,59,13,13,13,13,27,,"HK1003 -Blackpoint D2 - Rev.0E DD30092021"
1-5606,SI20HB-6-53,"INSTALL PIPING HRSG20_External Large Bore Second Part",5121,"HK1003-Rev.0E-3",TT_Task,"55902",-,-,-,0,TK_NotStart,04/08/2022,,06/10/2022,,"SI20HB-6-14 FS","SI20HB-6-14","SI20HA-6-20 FS,SI20HB-6-20 FF","SI20HA-6-20,SI20HB-6-20",104,,113,,24,,26,,76,624,"HK1003 -Blackpoint D2 - Rev.0E DD30092021"
1-5607,SI-P221-365&1,"BD - SUBMISSION - CIVIL PART 1",5121,"HK1003-Rev.0E-3",TT_Mile,"55902",-,-,-,100,TK_Complete,16/03/2021,16/03/2021,16/03/2021,16/03/2021,"SI-----1-05 FS","SI-----1-05","SI-P221-365& FS,SI-P221-15& FS,SI-P221-25& FS,SI-P221-295& FS,SI-P221-260& FS,SI-P221-245& FS,SI-P221-5& FS,SI-P221-365&2 FS","SI-P221-365&,SI-P221-15&,SI-P221-25&,SI-P221-295&,SI-P221-260&,SI-P221-245&,SI-P221-5&,SI-P221-365&2",32,32,32,32,7,7,7,7,6,,"HK1003 -Blackpoint D2 - Rev.0E DD30092021"
1-5608,SI20TPM1A6-26,"ISOLATION PCI GAS SUPPLY BY CLP",5121,"HK1003-Rev.0E-3",TT_Task,"55902",-,-,-,0,TK_NotStart,20/10/2022,,30/10/2022,,"SI20TPM1A6-20 FS","SI20TPM1A6-20","SI20TPM1A6-25 SS,SI20TPM1A2-16 SS","SI20TPM1A6-25,SI20TPM1A2-16",115,,117,,27,,27,,83,1448,"HK1003 -Blackpoint D2 - Rev.0E DD30092021"
1-5609,SI-P221-365&2,"BD - SUBMISSION - CIVIL PART 2",5121,"HK1003-Rev.0E-3",TT_Mile,"55902",-,-,-,100,TK_Complete,15/04/2021,15/04/2021,15/04/2021,15/04/2021,"SI-----1-05 FS,SI-P221-365&1 FS","SI-----1-05,SI-P221-365&1","SI-P221-100& FS,SI-P221-60& FS,SI-P221-70& FS,SI-P221-115& FS,SI-P221-305& FS,SI-P221-145& FS,SI-P221-125& FS,SI-P221-90& FS,SI-P221-170& FS","SI-P221-100&,SI-P221-60&,SI-P221-70&,SI-P221-115&,SI-P221-305&,SI-P221-145&,SI-P221-125&,SI-P221-90&,SI-P221-170&",36,36,36,36,8,8,8,8,8,,"HK1003 -Blackpoint D2 - Rev.0E DD30092021"
1-5610,SI-P221-365&3,"BD - SUBMISSION - CIVIL PART 3",5121,"HK1003-Rev.0E-3",TT_Mile,"55902",-,-,-,100,TK_Complete,31/05/2021,31/05/2021,31/05/2021,31/05/2021,"SI-----1-05 FS","SI-----1-05","SI-P221-20& FS,SI-P221-10& FS,SI-P221-300& FS,SI-P221-30& FS,SI-P221-390& FS,SI-P221-395& FS,SI-P221-375& FS,SI-P221-465& FS","SI-P221-20&,SI-P221-10&,SI-P221-300&,SI-P221-30&,SI-P221-390&,SI-P221-395&,SI-P221-375&,SI-P221-465&",43,43,43,43,10,10,10,10,15,,"HK1003 -Blackpoint D2 - Rev.0E DD30092021"
1-5611,SI-P221-365&4,"BD - SUBMISSION - CIVIL PART 4",5121,"HK1003-Rev.0E-3",TT_Mile,"55902",-,-,-,100,TK_Complete,17/06/2021,17/06/2021,17/06/2021,17/06/2021,"","","SI-P221-470& FS","SI-P221-470&",45,45,45,45,10,10,10,10,18,,"HK1003 -Blackpoint D2 - Rev.0E DD30092021"
1-5612,SI-P221-365&5,"BD - SUBMISSION - CIVIL PART 5",5121,"HK1003-Rev.0E-3",TT_Mile,"55902",-,-,-,100,TK_Complete,10/05/2021,10/05/2021,10/05/2021,10/05/2021,"SI-----1-05 FS","SI-----1-05","SI-P221-380& FS","SI-P221-380&",40,40,40,40,9,9,9,9,12,,"HK1003 -Blackpoint D2 - Rev.0E DD30092021"
1-5613,SI-P221-365&7,"BD - SUBMISSION - CIVIL PART 7",5121,"HK1003-Rev.0E-3",TT_Mile,"55902",-,-,-,0,TK_NotStart,02/12/2021,,02/12/2021,,"SI-----1-05 FS","SI-----1-05","SI-P221-540& FS","SI-P221-540&",69,,69,,16,,16,,40,1456,"HK1003 -Blackpoint D2 - Rev.0E DD30092021"
1-5614,SI-P221-365&8,"BD - SUBMISSION - CIVIL PART 7",5121,"HK1003-Rev.0E-3",TT_Mile,"55902",-,-,-,0,TK_NotStart,23/03/2022,,23/03/2022,,"SI-----1-05 FS","SI-----1-05","SI-P221-515& FS","SI-P221-515&",85,,85,,19,,19,,53,2008,"HK1003 -Blackpoint D2 - Rev.0E DD30092021"
1-5615,SI--9998-105,"PROVISION OF FORECAST COMMISSIONING & TESTING SCHEDULE / SEQUENCING /LOADS & UTILITY DEMAND NOMINATION",5121,"HK1003-Rev.0E-3",TT_Mile,"55902",-,-,-,0,TK_NotStart,08/08/2022,,08/08/2022,,"SI-----1-05 FS","SI-----1-05","SI20BFA8-36 FS","SI20BFA8-36",105,,105,,24,,24,,77,16,"HK1003 -Blackpoint D2 - Rev.0E DD30092021"
1-5616,SI--9998-100,"ESTABLISH COMMISSIONING COORDINATION GROUP",5121,"HK1003-Rev.0E-3",TT_Mile,"55902",-,-,-,0,TK_NotStart,08/08/2022,,08/08/2022,,"SI-----1-05 FS","SI-----1-05","SI20BFA8-36 FS","SI20BFA8-36",105,,105,,24,,24,,77,16,"HK1003 -Blackpoint D2 - Rev.0E DD30092021"
1-5617,SI20PAB5-85.00,"ERECTION PIPING SYSTEM (OUTSIDE) 20PAB20-SPOOL1",5121,"HK1003-Rev.0E-3",TT_Task,"55902",-,-,-,0,TK_NotStart,19/11/2021,,20/11/2021,,"SI20PAB5-85.11 FS","SI20PAB5-85.11","SI20PAB5-85.24 FS","SI20PAB5-85.24",67,,68,,15,,15,,39,736,"HK1003 -Blackpoint D2 - Rev.0E DD30092021"
1-5618,SI20PAB5-85.01,"ERECTION PIPING SYSTEM (OUTSIDE) 20PAB20 -SPOOL2,3,4",5121,"HK1003-Rev.0E-3",TT_Task,"55902",-,-,-,100,TK_Complete,25/08/2021,25/08/2021,26/08/2021,26/08/2021,"SI20PAB5-85.26 FS","SI20PAB5-85.26","SI20PAB5-85.09 FS","SI20PAB5-85.09",55,55,55,55,12,12,13,13,27,,"HK1003 -Blackpoint D2 - Rev.0E DD30092021"
1-5619,SI20PAB5-85.02,"ERECTION PIPING SYSTEM (OUTSIDE) 20PAB20-SPOOL5",5121,"HK1003-Rev.0E-3",TT_Task,"55902",-,-,-,100,TK_Complete,30/08/2021,30/08/2021,25/09/2021,25/09/2021,"SI20PAB5-85.03 FF,SI20PAB5-85.26 FS","SI20PAB5-85.03,SI20PAB5-85.26","SI20PAB5-85.25 FF","SI20PAB5-85.25",56,56,60,60,13,13,14,14,27,,"HK1003 -Blackpoint D2 - Rev.0E DD30092021"
1-5620,SI20PAB5-85.03,"ERECTION PIPING SYSTEM (OUTSIDE) 20PAB20-SPOOL6",5121,"HK1003-Rev.0E-3",TT_Task,"55902",-,-,-,100,TK_Complete,30/08/2021,30/08/2021,25/09/2021,25/09/2021,"SI20PAB5-85.08 FS","SI20PAB5-85.08","SI20PAB5-85.02 FF","SI20PAB5-85.02",56,56,60,60,13,13,14,14,27,,"HK1003 -Blackpoint D2 - Rev.0E DD30092021"
1-5621,SI20PAB5-85.04,"ERECTION PIPING SYSTEM (OUTSIDE) 20PAB20-SPOOL7,8,9",5121,"HK1003-Rev.0E-3",TT_Task,"55902",-,-,-,100,TK_Complete,30/07/2021,30/07/2021,31/07/2021,31/07/2021,"SI20PAB5-85.28 FS","SI20PAB5-85.28","SI20PAB5-85.05 FS","SI20PAB5-85.05",51,51,52,52,12,12,12,12,23,,"HK1003 -Blackpoint D2 - Rev.0E DD30092021"
1-5622,SI20PAB5-85.05,"ERECTION PIPING SYSTEM (OUTSIDE) 20PAB20-SPOOL10",5121,"HK1003-Rev.0E-3",TT_Task,"55902",-,-,-,100,TK_Complete,31/08/2021,31/08/2021,03/09/2021,03/09/2021,"SI20PAB5-85.04 FS","SI20PAB5-85.04","SI20PAB5-85.06 SS","SI20PAB5-85.06",56,56,56,56,13,13,13,13,27,,"HK1003 -Blackpoint D2 - Rev.0E DD30092021"
1-5623,SI20PAB5-85.06,"ERECTION PIPING SYSTEM (OUTSIDE) 20PAB20-SPOOL11",5121,"HK1003-Rev.0E-3",TT_Task,"55902",-,-,-,100,TK_Complete,02/09/2021,02/09/2021,04/09/2021,04/09/2021,"SI20PAB5-85.05 SS","SI20PAB5-85.05","SI20PAB5-85.07 SS","SI20PAB5-85.07",56,56,57,57,13,13,13,13,28,,"HK1003 -Blackpoint D2 - Rev.0E DD30092021"
1-5624,SI20PAB5-85.07,"ERECTION PIPING SYSTEM (OUTSIDE) 20PAB20-SPOOL12",5121,"HK1003-Rev.0E-3",TT_Task,"55902",-,-,-,100,TK_Complete,04/09/2021,04/09/2021,07/09/2021,07/09/2021,"SI20PAB5-85.06 SS","SI20PAB5-85.06","SI20PAB5-85.08 SS","SI20PAB5-85.08",57,57,57,57,13,13,13,13,28,,"HK1003 -Blackpoint D2 - Rev.0E DD30092021"
1-5625,SI20PAB5-85.08,"ERECTION PIPING SYSTEM (OUTSIDE) 20PAB20-SPOOL13",5121,"HK1003-Rev.0E-3",TT_Task,"55902",-,-,-,100,TK_Complete,04/09/2021,04/09/2021,24/09/2021,24/09/2021,"SI20PAB5-85.07 SS","SI20PAB5-85.07","SI20PAB5-85.03 FS,SI20PAB5-85.09 FS","SI20PAB5-85.03,SI20PAB5-85.09",57,57,59,59,13,13,13,13,28,,"HK1003 -Blackpoint D2 - Rev.0E DD30092021"
1-5626,SI20PAB5-85.09,"ERECTION PIPING SYSTEM (OUTSIDE) 20PAB20-SPOOL14",5121,"HK1003-Rev.0E-3",TT_Task,"55902",-,-,-,13,TK_Active,28/09/2021,28/09/2021,12/10/2021,,"SI20PAB5-85.01 FS,SI20PAB5-85.08 FS","SI20PAB5-85.01,SI20PAB5-85.08","SI20PAB5-85.12 SS","SI20PAB5-85.12",60,60,62,,14,14,14,,30,10272,"HK1003 -Blackpoint D2 - Rev.0E DD30092021"
1-5627,SI20PAB5-85.10,"ERECTION PIPING SYSTEM (OUTSIDE) 20PAB20-SPOOL15 INCLD. LAMINATION",5121,"HK1003-Rev.0E-3",TT_Task,"55902",-,-,-,0,TK_NotStart,15/11/2021,,16/11/2021,,"SI20PAB5-85.19 FS","SI20PAB5-85.19","SI20PAB5-85.11 FS","SI20PAB5-85.11",67,,67,,15,,15,,38,736,"HK1003 -Blackpoint D2 - Rev.0E DD30092021"
1-5628,SI20PAB5-85.11,"ERECTION PIPING SYSTEM (OUTSIDE) 20PAB20-SPOOL16",5121,"HK1003-Rev.0E-3",TT_Task,"55902",-,-,-,0,TK_NotStart,17/11/2021,,18/11/2021,,"SI20PAB5-85.10 FS","SI20PAB5-85.10","SI20PAB5-85.00 FS","SI20PAB5-85.00",67,,67,,15,,15,,38,736,"HK1003 -Blackpoint D2 - Rev.0E DD30092021"
1-5629,SI20PAB5-85.12,"ERECTION PIPING SYSTEM (OUTSIDE) 20PAB20-SPOOL17",5121,"HK1003-Rev.0E-3",TT_Task,"55902",-,-,-,50,TK_Active,28/09/2021,29/09/2021,29/09/2021,,"SI20PAB5-85.09 SS","SI20PAB5-85.09","SI20PAB5-85.13 FS","SI20PAB5-85.13",60,60,60,,14,14,14,,30,736,"HK1003 -Blackpoint D2 - Rev.0E DD30092021"
1-5630,SI20PAB5-85.13,"ERECTION PIPING SYSTEM (OUTSIDE) 20PAB20-SPOOL18",5121,"HK1003-Rev.0E-3",TT_Task,"55902",-,-,-,0,TK_NotStart,04/10/2021,,05/10/2021,,"SI20PAB5-85.12 FS","SI20PAB5-85.12","SI20PAB5-85.14 FS,SI20PAB5-85.29 FS","SI20PAB5-85.14,SI20PAB5-85.29",61,,61,,14,,14,,31,736,"HK1003 -Blackpoint D2 - Rev.0E DD30092021"
1-5631,SI20PAB5-85.14,"ERECTION PIPING SYSTEM (OUTSIDE) 20PAB20-SPOOL19",5121,"HK1003-Rev.0E-3",TT_Task,"55902",-,-,-,0,TK_NotStart,06/10/2021,,07/10/2021,,"SI20PAB5-85.13 FS","SI20PAB5-85.13","SI20PAB5-85.15 FS","SI20PAB5-85.15",61,,61,,14,,14,,32,744,"HK1003 -Blackpoint D2 - Rev.0E DD30092021"
1-5632,SI20PAB5-85.15,"ERECTION PIPING SYSTEM (OUTSIDE) 20PAB20-SPOOL20",5121,"HK1003-Rev.0E-3",TT_Task,"55902",-,-,-,0,TK_NotStart,08/10/2021,,09/10/2021,,"SI20PAB5-85.14 FS","SI20PAB5-85.14","SI20PAB5-85.16 FS","SI20PAB5-85.16",61,,62,,14,,14,,32,744,"HK1003 -Blackpoint D2 - Rev.0E DD30092021"
1-5633,SI20PAB5-85.16,"ERECTION PIPING SYSTEM (OUTSIDE) 20PAB20-SPOOL21,22,23",5121,"HK1003-Rev.0E-3",TT_Task,"55902",-,-,-,0,TK_NotStart,12/10/2021,,13/10/2021,,"SI20PAB5-85.30 FS,SI20PAB5-85.15 FS","SI20PAB5-85.30,SI20PAB5-85.15","SI20PAB5-85.17 FS","SI20PAB5-85.17",62,,62,,14,,14,,33,736,"HK1003 -Blackpoint D2 - Rev.0E DD30092021"
1-5634,SI20PAB5-85.17,"ERECTION PIPING SYSTEM (OUTSIDE) 20PAB20-SPOOL24",5121,"HK1003-Rev.0E-3",TT_Task,"55902",-,-,-,0,TK_NotStart,14/10/2021,,15/10/2021,,"SI20PAB5-85.16 FS","SI20PAB5-85.16","SI20PAB5-85.33 FS","SI20PAB5-85.33",62,,62,,14,,14,,34,736,"HK1003 -Blackpoint D2 - Rev.0E DD30092021"
1-5635,SI20PAB5-85.18,"ERECTION PIPING SYSTEM (OUTSIDE) 20PAB20-SPOOL25 INCLD. LAMINATION",5121,"HK1003-Rev.0E-3",TT_Task,"55902",-,-,-,0,TK_NotStart,05/11/2021,,06/11/2021,,"SI20PAB5-85.21 FS","SI20PAB5-85.21","SI20PAB5-85.31 FS","SI20PAB5-85.31",65,,66,,15,,15,,37,736,"HK1003 -Blackpoint D2 - Rev.0E DD30092021"
1-5636,SI20PAB5-85.19,"ERECTION PIPING SYSTEM (OUTSIDE) 20PAB20-SPOOL28",5121,"HK1003-Rev.0E-3",TT_Task,"55902",-,-,-,0,TK_NotStart,12/11/2021,,13/11/2021,,"SI20PAB5-85.32 FS","SI20PAB5-85.32","SI20PAB5-85.10 FS","SI20PAB5-85.10",66,,67,,15,,15,,38,736,"HK1003 -Blackpoint D2 - Rev.0E DD30092021"
1-5637,SI20PAB5-85.20,"ERECTION PIPING SYSTEM (OUTSIDE) 20PAB20-SPOOL29&31",5121,"HK1003-Rev.0E-3",TT_Task,"55902",-,-,-,0,TK_NotStart,21/10/2021,,22/10/2021,,"SI20PAB5-85.33 FS","SI20PAB5-85.33","SI20PAB5-85.22 FS","SI20PAB5-85.22",63,,63,,14,,14,,35,736,"HK1003 -Blackpoint D2 - Rev.0E DD30092021"
1-5638,SI20PAB5-85.21,"ERECTION PIPING SYSTEM (OUTSIDE) 20PAB20-SPOOL30",5121,"HK1003-Rev.0E-3",TT_Task,"55902",-,-,-,0,TK_NotStart,03/11/2021,,04/11/2021,,"SI20PAB5-85.35 FS","SI20PAB5-85.35","SI20PAB5-85.18 FS","SI20PAB5-85.18",65,,65,,15,,15,,37,736,"HK1003 -Blackpoint D2 - Rev.0E DD30092021"
1-5639,SI20PAB5-85.22,"ERECTION PIPING SYSTEM (OUTSIDE) 20PAB20-SPOOL32",5121,"HK1003-Rev.0E-3",TT_Task,"55902",-,-,-,0,TK_NotStart,23/10/2021,,25/10/2021,,"SI20PAB5-85.20 FS","SI20PAB5-85.20","SI20PAB5-85.34 FS","SI20PAB5-85.34",64,,64,,14,,15,,36,736,"HK1003 -Blackpoint D2 - Rev.0E DD30092021"
1-5640,SI20PAB5-85.23,"ERECTION PIPING SYSTEM (OUTSIDE) 20PAB20-SPOOL33",5121,"HK1003-Rev.0E-3",TT_Task,"55902",-,-,-,0,TK_NotStart,29/10/2021,,30/10/2021,,"SI20PAB5-85.34 FS","SI20PAB5-85.34","SI20PAB5-85.35 FS","SI20PAB5-85.35",64,,65,,15,,15,,36,736,"HK1003 -Blackpoint D2 - Rev.0E DD30092021"
1-5641,SI20PAB5-85.24,"ERECTION PIPING SYSTEM (OUTSIDE) 20PAB20-LAMINATION SPOOL1,2",5121,"HK1003-Rev.0E-3",TT_Task,"55902",-,-,-,0,TK_NotStart,22/11/2021,,25/11/2021,,"SI20PAB5-85.00 FS","SI20PAB5-85.00","SI20PAB5-100 FS,SI20PAB5-85 FF","SI20PAB5-100,SI20PAB5-85",68,,68,,15,,16,,39,736,"HK1003 -Blackpoint D2 - Rev.0E DD30092021"
1-5642,SI20PAB5-85.25,"ERECTION PIPING SYSTEM (OUTSIDE) 20PAB20-LAMINATION SPOOL 2,3",5121,"HK1003-Rev.0E-3",TT_Task,"55902",-,-,-,100,TK_Complete,28/08/2021,28/08/2021,27/09/2021,27/09/2021,"SI20PAB5-85.02 FF","SI20PAB5-85.02","SI20PAB5-85.26 FS,SI20PAB5-85.29 FS","SI20PAB5-85.26,SI20PAB5-85.29",56,56,60,60,13,13,14,14,27,,"HK1003 -Blackpoint D2 - Rev.0E DD30092021"
1-5643,SI20PAB5-85.26,"ERECTION PIPING SYSTEM (OUTSIDE) 20PAB20-LAMINATION SPOOL 3,4",5121,"HK1003-Rev.0E-3",TT_Task,"55902",-,-,-,100,TK_Complete,28/08/2021,28/08/2021,23/09/2021,23/09/2021,"SI20PAB5-85.25 FS","SI20PAB5-85.25","SI20PAB5-85.01 FS,SI20PAB5-85.02 FS","SI20PAB5-85.01,SI20PAB5-85.02",56,56,59,59,13,13,13,13,27,,"HK1003 -Blackpoint D2 - Rev.0E DD30092021"
1-5644,SI20PAB5-85.27,"ERECTION PIPING SYSTEM (OUTSIDE) 20PAB20-LAMINATION SPOOL 7,8",5121,"HK1003-Rev.0E-3",TT_Task,"55902",-,-,-,100,TK_Complete,19/07/2021,19/07/2021,28/08/2021,30/08/2021,"SI20PAB5-85.36 FS","SI20PAB5-85.36","SI20PAB5-85.28 FS,SI20PAB5-85 SS","SI20PAB5-85.28,SI20PAB5-85",50,50,56,56,11,11,13,13,22,,"HK1003 -Blackpoint D2 - Rev.0E DD30092021"
1-5645,SI20PAB5-85.28,"ERECTION PIPING SYSTEM (OUTSIDE) 20PAB20-LAMINATION SPOOL 8,9",5121,"HK1003-Rev.0E-3",TT_Task,"55902",-,-,-,100,TK_Complete,24/07/2021,24/07/2021,28/08/2021,30/08/2021,"SI20PAB5-85.27 FS","SI20PAB5-85.27","SI20PAB5-85.04 FS","SI20PAB5-85.04",51,51,56,56,11,11,13,13,23,,"HK1003 -Blackpoint D2 - Rev.0E DD30092021"
1-5646,SI20PAB5-85.29,"ERECTION PIPING SYSTEM (OUTSIDE) 20PAB20-LAMINATION SPOOL 21,22",5121,"HK1003-Rev.0E-3",TT_Task,"55902",-,-,-,0,TK_NotStart,06/10/2021,,07/10/2021,,"SI20PAB5-85.25 FS,SI20PAB5-85.13 FS","SI20PAB5-85.25,SI20PAB5-85.13","SI20PAB5-85.30 FS","SI20PAB5-85.30",61,,61,,14,,14,,32,736,"HK1003 -Blackpoint D2 - Rev.0E DD30092021"
1-5647,SI20PAB5-85.30,"ERECTION PIPING SYSTEM (OUTSIDE) 20PAB20-LAMINATION SPOOL 22,23",5121,"HK1003-Rev.0E-3",TT_Task,"55902",-,-,-,0,TK_NotStart,08/10/2021,,11/10/2021,,"SI20PAB5-85.29 FS","SI20PAB5-85.29","SI20PAB5-85.16 FS","SI20PAB5-85.16",61,,62,,14,,14,,32,736,"HK1003 -Blackpoint D2 - Rev.0E DD30092021"
1-5648,SI20PAB5-85.31,"ERECTION PIPING SYSTEM (OUTSIDE) 20PAB20-SPOOL26 INCLD. LAMINATION",5121,"HK1003-Rev.0E-3",TT_Task,"55902",-,-,-,0,TK_NotStart,08/11/2021,,09/11/2021,,"SI20PAB5-85.18 FS","SI20PAB5-85.18","SI20PAB5-85.32 FS","SI20PAB5-85.32",66,,66,,15,,15,,37,736,"HK1003 -Blackpoint D2 - Rev.0E DD30092021"
1-5649,SI20PAB5-85.32,"ERECTION PIPING SYSTEM (OUTSIDE) 20PAB20-SPOOL27",5121,"HK1003-Rev.0E-3",TT_Task,"55902",-,-,-,0,TK_NotStart,10/11/2021,,11/11/2021,,"SI20PAB5-85.31 FS","SI20PAB5-85.31","SI20PAB5-85.19 FS","SI20PAB5-85.19",66,,66,,15,,15,,38,736,"HK1003 -Blackpoint D2 - Rev.0E DD30092021"
1-5650,SI20PAB5-85.33,"ERECTION PIPING SYSTEM (OUTSIDE) 20PAB20-LAMINATION SPOOL 29-31",5121,"HK1003-Rev.0E-3",TT_Task,"55902",-,-,-,0,TK_NotStart,16/10/2021,,20/10/2021,,"SI20PAB5-85.17 FS","SI20PAB5-85.17","SI20PAB5-85.20 FS","SI20PAB5-85.20",63,,63,,14,,14,,34,736,"HK1003 -Blackpoint D2 - Rev.0E DD30092021"
1-5651,SI20PAB5-85.34,"ERECTION PIPING SYSTEM (OUTSIDE) 20PAB20-LAMINATION SPOOL 32-31",5121,"HK1003-Rev.0E-3",TT_Task,"55902",-,-,-,0,TK_NotStart,26/10/2021,,28/10/2021,,"SI20PAB5-85.22 FS","SI20PAB5-85.22","SI20PAB5-85.23 FS","SI20PAB5-85.23",64,,64,,15,,15,,36,736,"HK1003 -Blackpoint D2 - Rev.0E DD30092021"
1-5652,SI20PAB5-85.35,"ERECTION PIPING SYSTEM (OUTSIDE) 20PAB20-LAMINATION SPOOL 33-31",5121,"HK1003-Rev.0E-3",TT_Task,"55902",-,-,-,0,TK_NotStart,01/11/2021,,02/11/2021,,"SI20PAB5-85.23 FS","SI20PAB5-85.23","SI20PAB5-85.21 FS","SI20PAB5-85.21",65,,65,,15,,15,,36,736,"HK1003 -Blackpoint D2 - Rev.0E DD30092021"
1-5653,SI20PAB5-85.36,"BACKFILLING TO 0,5m BEFORE PAB INSTALLATION",5121,"HK1003-Rev.0E-3",TT_Task,"55902",-,-,-,100,TK_Complete,15/07/2021,15/07/2021,31/07/2021,31/07/2021,"SI-----5-20 FS","SI-----5-20","SI20PAB5-85 FS,SI20PAB5-85.27 FS,SI20PAB5-60.24 SS,SI20PAB5-60 FS,SI20PAB5-65# SS","SI20PAB5-85,SI20PAB5-85.27,SI20PAB5-60.24,SI20PAB5-60,SI20PAB5-65#",49,49,52,52,11,11,12,12,22,,"HK1003 -Blackpoint D2 - Rev.0E DD30092021"
1-5654,SI--SG-2-107,"SUPPLIER P&ID's PREPARATION / FRIST DESIGN DWGS (ISOMETRICS)",5121,"HK1003-Rev.0E-3",TT_Task,"55902",-,-,-,100,TK_Complete,24/07/2021,24/07/2021,03/09/2021,03/09/2021,"SI--SG-2-88 FS","SI--SG-2-88","SI--SG-2-85 FS","SI--SG-2-85",51,51,56,56,11,11,13,13,23,,"HK1003 -Blackpoint D2 - Rev.0E DD30092021"
1-5655,SI20SCA2-89,"RFQ CLARIFCATION ONGOING DUE TO CLIENT REQUEST TO CHANGE AIR COMPRESSOR TYPE TO OIL FILLED",5121,"HK1003-Rev.0E-3",TT_Task,"55902",-,-,-,100,TK_Complete,18/07/2021,18/07/2021,30/07/2021,30/07/2021,"SI20SCA2-80 SS,SI20SCA2-80 FS","SI20SCA2-80,SI20SCA2-80","SI20SCA2-90 FS,SI20SCA2-90 FF,SI20SCA2-88 SS,SI20SCA2-66 FS","SI20SCA2-90,SI20SCA2-90,SI20SCA2-88,SI20SCA2-66",50,50,51,51,11,11,12,12,22,,"HK1003 -Blackpoint D2 - Rev.0E DD30092021"
1-5656,SI20SCA2-90,"QUOTATION STAGE AIR COMPRESSOR SYSTEM SCA - OIL FILLED COMPRESSOR",5121,"HK1003-Rev.0E-3",TT_Task,"55902",-,-,-,100,TK_Complete,31/07/2021,31/07/2021,20/09/2021,20/09/2021,"SI20SCA2-89 FS,SI20SCA2-89 FF","SI20SCA2-89,SI20SCA2-89","SI20SCA2-85 FS","SI20SCA2-85",52,52,59,59,12,12,13,13,24,,"HK1003 -Blackpoint D2 - Rev.0E DD30092021"
1-5657,SI20PAB5-60.00,"ERECTION PIPING SYSTEM (OUTSIDE) 20PAB41-SPOOL1",5121,"HK1003-Rev.0E-3",TT_Task,"55902",-,-,-,0,TK_NotStart,18/11/2021,,19/11/2021,,"SI20PAB5-60.11 FS","SI20PAB5-60.11","SI20PAB5-60.22 FS","SI20PAB5-60.22",67,,67,,15,,15,,39,760,"HK1003 -Blackpoint D2 - Rev.0E DD30092021"
1-5658,SI20PAB5-60.01,"ERECTION PIPING SYSTEM (OUTSIDE) 20PAB41-SPOOL2,3",5121,"HK1003-Rev.0E-3",TT_Task,"55902",-,-,-,100,TK_Complete,27/09/2021,27/09/2021,28/09/2021,28/09/2021,"SI20PAB5-60.02 FS","SI20PAB5-60.02","SI20PAB5-60.09 SS","SI20PAB5-60.09",60,60,60,60,14,14,14,14,30,,"HK1003 -Blackpoint D2 - Rev.0E DD30092021"
1-5659,SI20PAB5-60.02,"ERECTION PIPING SYSTEM (OUTSIDE) 20PAB41-SPOOL4",5121,"HK1003-Rev.0E-3",TT_Task,"55902",-,-,-,100,TK_Complete,25/09/2021,23/09/2021,27/09/2021,25/09/2021,"SI20PAB5-60.03 FS","SI20PAB5-60.03","SI20PAB5-60.23 FS,SI20PAB5-60.01 FS","SI20PAB5-60.23,SI20PAB5-60.01",60,59,60,60,14,13,14,14,30,,"HK1003 -Blackpoint D2 - Rev.0E DD30092021"
1-5660,SI20PAB5-60.03,"ERECTION PIPING SYSTEM (OUTSIDE) 20PAB41-SPOOL5",5121,"HK1003-Rev.0E-3",TT_Task,"55902",-,-,-,100,TK_Complete,24/09/2021,23/09/2021,25/09/2021,24/09/2021,"SI20PAB5-60.08 FS","SI20PAB5-60.08","SI20PAB5-60.02 FS","SI20PAB5-60.02",59,59,60,59,13,13,14,13,30,,"HK1003 -Blackpoint D2 - Rev.0E DD30092021"
1-5661,SI20PAB5-60.04,"ERECTION PIPING SYSTEM (OUTSIDE) 20PAB41-SPOOL6,7,8",5121,"HK1003-Rev.0E-3",TT_Task,"55902",-,-,-,100,TK_Complete,07/08/2021,07/08/2021,10/09/2021,10/09/2021,"SI20PAB5-60.25 FS","SI20PAB5-60.25","SI20PAB5-60.05 FS","SI20PAB5-60.05",53,53,57,57,12,12,13,13,25,,"HK1003 -Blackpoint D2 - Rev.0E DD30092021"
1-5662,SI20PAB5-60.05,"ERECTION PIPING SYSTEM (OUTSIDE) 20PAB41-SPOOL9",5121,"HK1003-Rev.0E-3",TT_Task,"55902",-,-,-,100,TK_Complete,27/09/2021,27/09/2021,28/09/2021,28/09/2021,"SI20PAB5-60.04 FS","SI20PAB5-60.04","SI20PAB5-60.06 FS","SI20PAB5-60.06",60,60,60,60,14,14,14,14,30,,"HK1003 -Blackpoint D2 - Rev.0E DD30092021"
1-5663,SI20PAB5-60.06,"ERECTION PIPING SYSTEM (OUTSIDE) 20PAB41-SPOOL10",5121,"HK1003-Rev.0E-3",TT_Task,"55902",-,-,-,50,TK_Active,29/09/2021,29/09/2021,30/09/2021,,"SI20PAB5-60.05 FS","SI20PAB5-60.05","SI20PAB5-60.07 FS,SI20PAB5-60.12 FS","SI20PAB5-60.07,SI20PAB5-60.12",60,60,60,,14,14,14,,30,760,"HK1003 -Blackpoint D2 - Rev.0E DD30092021"
1-5664,SI20PAB5-60.07,"ERECTION PIPING SYSTEM (OUTSIDE) 20PAB41-SPOOL11",5121,"HK1003-Rev.0E-3",TT_Task,"55902",-,-,-,0,TK_NotStart,02/10/2021,,04/10/2021,,"SI20PAB5-60.06 FS","SI20PAB5-60.06","SI20PAB5-60.08 FS,SI20PAB5-60.08 FF","SI20PAB5-60.08,SI20PAB5-60.08",61,,61,,14,,14,,31,760,"HK1003 -Blackpoint D2 - Rev.0E DD30092021"
1-5665,SI20PAB5-60.08,"ERECTION PIPING SYSTEM (OUTSIDE) 20PAB41-SPOOL12",5121,"HK1003-Rev.0E-3",TT_Task,"55902",-,-,-,0,TK_NotStart,05/10/2021,,06/10/2021,,"SI20PAB5-60.07 FS,SI20PAB5-60.07 FF","SI20PAB5-60.07,SI20PAB5-60.07","SI20PAB5-60.03 FS,SI20PAB5-60.14 FS","SI20PAB5-60.03,SI20PAB5-60.14",61,,61,,14,,14,,31,760,"HK1003 -Blackpoint D2 - Rev.0E DD30092021"
1-5666,SI20PAB5-60.09,"ERECTION PIPING SYSTEM (OUTSIDE) 20PAB41-SPOOL13",5121,"HK1003-Rev.0E-3",TT_Task,"55902",-,-,-,150,TK_Active,27/09/2021,27/09/2021,28/09/2021,,"SI20PAB5-60.01 SS","SI20PAB5-60.01","SI20PAB5-60.12 FS","SI20PAB5-60.12",60,60,60,,14,14,14,,30,768,"HK1003 -Blackpoint D2 - Rev.0E DD30092021"
1-5667,SI20PAB5-60.10,"ERECTION PIPING SYSTEM (OUTSIDE) 20PAB41-SPOOL14 INCLD. LAMINATION",5121,"HK1003-Rev.0E-3",TT_Task,"55902",-,-,-,0,TK_NotStart,12/11/2021,,15/11/2021,,"SI20PAB5-60.21 FS","SI20PAB5-60.21","SI20PAB5-60.11 FS","SI20PAB5-60.11",66,,67,,15,,15,,38,760,"HK1003 -Blackpoint D2 - Rev.0E DD30092021"
1-5668,SI20PAB5-60.11,"ERECTION PIPING SYSTEM (OUTSIDE) 20PAB41-SPOOL15",5121,"HK1003-Rev.0E-3",TT_Task,"55902",-,-,-,0,TK_NotStart,16/11/2021,,17/11/2021,,"SI20PAB5-60.10 FS","SI20PAB5-60.10","SI20PAB5-60.00 FS","SI20PAB5-60.00",67,,67,,15,,15,,38,760,"HK1003 -Blackpoint D2 - Rev.0E DD30092021"
1-5669,SI20PAB5-60.12,"ERECTION PIPING SYSTEM (OUTSIDE) 20PAB41-SPOOL16",5121,"HK1003-Rev.0E-3",TT_Task,"55902",-,-,-,0,TK_NotStart,02/10/2021,,04/10/2021,,"SI20PAB5-60.09 FS,SI20PAB5-60.06 FS","SI20PAB5-60.09,SI20PAB5-60.06","SI20PAB5-60.13 FS","SI20PAB5-60.13",61,,61,,14,,14,,31,760,"HK1003 -Blackpoint D2 - Rev.0E DD30092021"
1-5670,SI20PAB5-60.13,"ERECTION PIPING SYSTEM (OUTSIDE) 20PAB41-SPOOL17",5121,"HK1003-Rev.0E-3",TT_Task,"55902",-,-,-,0,TK_NotStart,05/10/2021,,06/10/2021,,"SI20PAB5-60.12 FS","SI20PAB5-60.12","SI20PAB5-60.14 FS","SI20PAB5-60.14",61,,61,,14,,14,,31,760,"HK1003 -Blackpoint D2 - Rev.0E DD30092021"
1-5671,SI20PAB5-60.14,"ERECTION PIPING SYSTEM (OUTSIDE) 20PAB41-SPOOL18",5121,"HK1003-Rev.0E-3",TT_Task,"55902",-,-,-,0,TK_NotStart,07/10/2021,,08/10/2021,,"SI20PAB5-60.13 FS,SI20PAB5-60.08 FS","SI20PAB5-60.13,SI20PAB5-60.08","SI20PAB5-60.15 FS","SI20PAB5-60.15",61,,61,,14,,14,,32,760,"HK1003 -Blackpoint D2 - Rev.0E DD30092021"
1-5672,SI20PAB5-60.15,"ERECTION PIPING SYSTEM (OUTSIDE) 20PAB41-SPOOL19",5121,"HK1003-Rev.0E-3",TT_Task,"55902",-,-,-,0,TK_NotStart,09/10/2021,,11/10/2021,,"SI20PAB5-60.14 FS","SI20PAB5-60.14","SI20PAB5-60.26 FS","SI20PAB5-60.26",62,,62,,14,,14,,32,760,"HK1003 -Blackpoint D2 - Rev.0E DD30092021"
1-5673,SI20PAB5-60.16,"ERECTION PIPING SYSTEM (OUTSIDE) 20PAB41-SPOOL20,21",5121,"HK1003-Rev.0E-3",TT_Task,"55902",-,-,-,0,TK_NotStart,15/10/2021,,16/10/2021,,"SI20PAB5-60.26 FS","SI20PAB5-60.26","SI20PAB5-60.27 FS","SI20PAB5-60.27",62,,63,,14,,14,,34,760,"HK1003 -Blackpoint D2 - Rev.0E DD30092021"
1-5674,SI20PAB5-60.17,"ERECTION PIPING SYSTEM (OUTSIDE) 20PAB41-SPOOL22,23",5121,"HK1003-Rev.0E-3",TT_Task,"55902",-,-,-,0,TK_NotStart,21/10/2021,,22/10/2021,,"SI20PAB5-60.27 FS","SI20PAB5-60.27","SI20PAB5-60.18 FS","SI20PAB5-60.18",63,,63,,14,,14,,35,760,"HK1003 -Blackpoint D2 - Rev.0E DD30092021"
1-5675,SI20PAB5-60.18,"ERECTION PIPING SYSTEM (OUTSIDE) 20PAB41-SPOOL24,25",5121,"HK1003-Rev.0E-3",TT_Task,"55902",-,-,-,0,TK_NotStart,23/10/2021,,25/10/2021,,"SI20PAB5-60.17 FS","SI20PAB5-60.17","SI20PAB5-60.28 FS","SI20PAB5-60.28",64,,64,,14,,15,,36,760,"HK1003 -Blackpoint D2 - Rev.0E DD30092021"
1-5676,SI20PAB5-60.19,"ERECTION PIPING SYSTEM (OUTSIDE) 20PAB41-SPOOL26",5121,"HK1003-Rev.0E-3",TT_Task,"55902",-,-,-,0,TK_NotStart,29/10/2021,,30/10/2021,,"SI20PAB5-60.28 FS","SI20PAB5-60.28","SI20PAB5-60.29 FS","SI20PAB5-60.29",64,,65,,15,,15,,36,760,"HK1003 -Blackpoint D2 - Rev.0E DD30092021"
1-5677,SI20PAB5-60.20,"ERECTION PIPING SYSTEM (OUTSIDE) 20PAB41-SPOOL27,28,29",5121,"HK1003-Rev.0E-3",TT_Task,"55902",-,-,-,0,TK_NotStart,08/11/2021,,09/11/2021,,"SI20PAB5-60.30 FS","SI20PAB5-60.30","SI20PAB5-60.21 FS","SI20PAB5-60.21",66,,66,,15,,15,,37,760,"HK1003 -Blackpoint D2 - Rev.0E DD30092021"
1-5678,SI20PAB5-60.21,"ERECTION PIPING SYSTEM (OUTSIDE) 20PAB41-SPOOL30",5121,"HK1003-Rev.0E-3",TT_Task,"55902",-,-,-,0,TK_NotStart,10/11/2021,,11/11/2021,,"SI20PAB5-60.20 FS","SI20PAB5-60.20","SI20PAB5-60.10 FS","SI20PAB5-60.10",66,,66,,15,,15,,38,760,"HK1003 -Blackpoint D2 - Rev.0E DD30092021"
1-5679,SI20PAB5-60.22,"ERECTION PIPING SYSTEM (OUTSIDE) 20PAB41-LAMINATION SPOOL 01,02",5121,"HK1003-Rev.0E-3",TT_Task,"55902",-,-,-,0,TK_NotStart,20/11/2021,,22/11/2021,,"SI20PAB5-60.00 FS","SI20PAB5-60.00","SI20PAB5-90 FS,SI20PAB5-60 FF","SI20PAB5-90,SI20PAB5-60",68,,68,,15,,15,,39,760,"HK1003 -Blackpoint D2 - Rev.0E DD30092021"
1-5680,SI20PAB5-60.23,"ERECTION PIPING SYSTEM (OUTSIDE) 20PAB41-LAMINATION SPOOL 02,03",5121,"HK1003-Rev.0E-3",TT_Task,"55902",-,-,-,100,TK_Complete,31/08/2021,31/08/2021,01/09/2021,01/09/2021,"SI20PAB5-60.02 FS","SI20PAB5-60.02","SI20PAB5-60.24 FS","SI20PAB5-60.24",56,56,56,56,13,13,13,13,27,,"HK1003 -Blackpoint D2 - Rev.0E DD30092021"
1-5681,SI20PAB5-60.24,"ERECTION PIPING SYSTEM (OUTSIDE) 20PAB41-LAMINATION SPOOL 06,07",5121,"HK1003-Rev.0E-3",TT_Task,"55902",-,-,-,100,TK_Complete,06/08/2021,06/08/2021,10/09/2021,10/09/2021,"SI20PAB5-85.36 SS,SI20PAB5-60.23 FS","SI20PAB5-85.36,SI20PAB5-60.23","SI20PAB5-60.25 FF,SI20PAB5-60 SS","SI20PAB5-60.25,SI20PAB5-60",52,52,57,57,12,12,13,13,25,,"HK1003 -Blackpoint D2 - Rev.0E DD30092021"
1-5682,SI20PAB5-60.25,"ERECTION PIPING SYSTEM (OUTSIDE) 20PAB41-LAMINATION SPOOL 07,08",5121,"HK1003-Rev.0E-3",TT_Task,"55902",-,-,-,100,TK_Complete,04/08/2021,04/08/2021,10/09/2021,10/09/2021,"SI20PAB5-60.24 FF","SI20PAB5-60.24","SI20PAB5-60.04 FS","SI20PAB5-60.04",52,52,57,57,12,12,13,13,24,,"HK1003 -Blackpoint D2 - Rev.0E DD30092021"
1-5683,SI20PAB5-60.26,"ERECTION PIPING SYSTEM (OUTSIDE) 20PAB41-LAMINATION SPOOL 20,21",5121,"HK1003-Rev.0E-3",TT_Task,"55902",-,-,-,0,TK_NotStart,12/10/2021,,14/10/2021,,"SI20PAB5-60.15 FS","SI20PAB5-60.15","SI20PAB5-60.16 FS","SI20PAB5-60.16",62,,62,,14,,14,,33,760,"HK1003 -Blackpoint D2 - Rev.0E DD30092021"
1-5684,SI20PAB5-60.27,"ERECTION PIPING SYSTEM (OUTSIDE) 20PAB41-LAMINATION SPOOL 22,23",5121,"HK1003-Rev.0E-3",TT_Task,"55902",-,-,-,0,TK_NotStart,18/10/2021,,20/10/2021,,"SI20PAB5-60.16 FS","SI20PAB5-60.16","SI20PAB5-60.17 FS","SI20PAB5-60.17",63,,63,,14,,14,,34,760,"HK1003 -Blackpoint D2 - Rev.0E DD30092021"
1-5685,SI20PAB5-60.28,"ERECTION PIPING SYSTEM (OUTSIDE) 20PAB41-LAMINATION SPOOL 25,26",5121,"HK1003-Rev.0E-3",TT_Task,"55902",-,-,-,0,TK_NotStart,26/10/2021,,28/10/2021,,"SI20PAB5-60.18 FS","SI20PAB5-60.18","SI20PAB5-60.19 FS","SI20PAB5-60.19",64,,64,,15,,15,,36,760,"HK1003 -Blackpoint D2 - Rev.0E DD30092021"
1-5686,SI20PAB5-60.29,"ERECTION PIPING SYSTEM (OUTSIDE) 20PAB41-LAMINATION SPOOL 27-28",5121,"HK1003-Rev.0E-3",TT_Task,"55902",-,-,-,0,TK_NotStart,01/11/2021,,03/11/2021,,"SI20PAB5-60.19 FS","SI20PAB5-60.19","SI20PAB5-60.30 FS","SI20PAB5-60.30",65,,65,,15,,15,,36,760,"HK1003 -Blackpoint D2 - Rev.0E DD30092021"
1-5687,SI20PAB5-60.30,"ERECTION PIPING SYSTEM (OUTSIDE) 20PAB41-LAMINATION SPOOL 28-29",5121,"HK1003-Rev.0E-3",TT_Task,"55902",-,-,-,0,TK_NotStart,04/11/2021,,06/11/2021,,"SI20PAB5-60.29 FS","SI20PAB5-60.29","SI20PAB5-60.20 FS","SI20PAB5-60.20",65,,66,,15,,15,,37,760,"HK1003 -Blackpoint D2 - Rev.0E DD30092021"
1-5688,SI--URA2-93,"ATKINS  REDESIGN DD SUPERSTRUCTURE-20URA/URD",5121,"HK1003-Rev.0E-3",TT_Task,"55902",-,-,-,100,TK_Complete,25/08/2021,25/08/2021,21/09/2021,21/09/2021,"SI--URA2-89 SS","SI--URA2-89","SI--URA2-94 FS","SI--URA2-94",55,55,59,59,12,12,13,13,27,,"HK1003 -Blackpoint D2 - Rev.0E DD30092021"
1-5689,SI--URA2-94,"BD - SUBMISSION APPROVAL 2ND ROUND SUPERSTRUCTURE-20URA/URD",5121,"HK1003-Rev.0E-3",TT_Task,"55902",-,-,-,27,TK_Active,22/09/2021,22/09/2021,21/10/2021,,"SI--URA2-93 FS,SI-P221-370& FS","SI--URA2-93,SI-P221-370&","SI20PUR2J88 FS","SI20PUR2J88",59,59,63,,13,13,14,,30,392,"HK1003 -Blackpoint D2 - Rev.0E DD30092021"
1-5690,SI--URA2-98,"BARBENDING AND DRAWINGS SUPERSTRUCTURE-20URA/URD",5121,"HK1003-Rev.0E-3",TT_Task,"55902",-,-,-,0,TK_NotStart,25/10/2021,,21/11/2021,,"SI20PUR2J88 FF","SI20PUR2J88","SI--URA2-91 FS,SI20PUR2J94 FF","SI--URA2-91,SI20PUR2J94",64,,68,,15,,15,,36,392,"HK1003 -Blackpoint D2 - Rev.0E DD30092021"
1-5691,SI20URA2B8,"BD - SUBMISSION APPROVAL 1ST ROUND SUBSTRUCTURE-20URA/URD",5121,"HK1003-Rev.0E-3",TT_Task,"55902",-,-,-,100,TK_Complete,14/06/2021,14/06/2021,14/06/2021,14/06/2021,"","","SI--URA2-87 FS,SI--URA2-99 FS","SI--URA2-87,SI--URA2-99",45,45,45,45,10,10,10,10,17,,"HK1003 -Blackpoint D2 - Rev.0E DD30092021"
1-5692,SI--URA2-99,"ATKINS  REDESIGN DD SUBSTRUCTURE-20URA/URD",5121,"HK1003-Rev.0E-3",TT_Task,"55902",-,-,-,100,TK_Complete,15/06/2021,15/06/2021,13/07/2021,13/07/2021,"SI20URA2B8 FS,SI--URA2-87 FF","SI20URA2B8,SI--URA2-87","SI--URA2-85 FS,SI--URA2-60 FS","SI--URA2-85,SI--URA2-60",45,45,49,49,10,10,11,11,17,,"HK1003 -Blackpoint D2 - Rev.0E DD30092021"
1-5693,SI--URA2-100,"COORDINATION ATKINS - CPT / INCL. EMBEDDED PARTS - SUBSTRUCTURE 20URA/URD",5121,"HK1003-Rev.0E-3",TT_Task,"55902",-,-,-,100,TK_Complete,06/08/2021,06/08/2021,02/09/2021,02/09/2021,"SI--URA2-84 FS","SI--URA2-84","SI--URA2-92 FS","SI--URA2-92",52,52,56,56,12,12,13,13,25,,"HK1003 -Blackpoint D2 - Rev.0E DD30092021"
1-5694,SI--3335-80,"SITE POWER -  SDB1.7 - INSTALLATION",5121,"HK1003-Rev.0E-3",TT_Task,"55902",-,-,-,100,TK_Complete,01/07/2021,01/07/2021,13/08/2021,13/08/2021,"SI-----5-20 FS,SI--5552-103 FS","SI-----5-20,SI--5552-103","SI--PEM6-20& FS","SI--PEM6-20&",47,47,53,53,11,11,12,12,20,,"HK1003 -Blackpoint D2 - Rev.0E DD30092021"
1-5695,SI--URA2-101,"COOLING TOWER COMPONENTS (SPIG) SUPERSTRUCTURE-20URA/URD",5121,"HK1003-Rev.0E-3",TT_FinMile,"55902",-,-,-,100,TK_Complete,08/08/2021,08/08/2021,08/08/2021,08/08/2021,"SI20PUR2J89 FS","SI20PUR2J89","SI20URA2-76 FS,SI20URA2-75 FS,SI--URA2-102 FS","SI20URA2-76,SI20URA2-75,SI--URA2-102",53,53,53,53,12,12,12,12,25,,"HK1003 -Blackpoint D2 - Rev.0E DD30092021"
1-5696,SI--URA2-102,"COORDINATION OF TERMINAL POINTS SUPERSTRUCTURE-20URA/URD",5121,"HK1003-Rev.0E-3",TT_FinMile,"55902",-,-,-,100,TK_Complete,08/08/2021,08/08/2021,08/08/2021,08/08/2021,"SI--URA2-101 FS,SI20URA2-76 FS","SI--URA2-101,SI20URA2-76","SI20PUR2J91 FF","SI20PUR2J91",53,53,53,53,12,12,12,12,25,,"HK1003 -Blackpoint D2 - Rev.0E DD30092021"
1-5697,SI20URA2-75,"FIXING FOR COMPONENTS(PLUS CP),PIPING(MTECH) SUPERSTRUCTURE-20URA/URD",5121,"HK1003-Rev.0E-3",TT_FinMile,"55902",-,-,-,100,TK_Complete,08/08/2021,08/08/2021,08/08/2021,08/08/2021,"SI--URA2-101 FS","SI--URA2-101","SI20URA2-76 FS","SI20URA2-76",53,53,53,53,12,12,12,12,25,,"HK1003 -Blackpoint D2 - Rev.0E DD30092021"
1-5698,SI20URA2-76,"FIXING FOR CABLE TRAY ,LIGTHING (ETECH) SUPERSTRUCTURE-20URA/URD",5121,"HK1003-Rev.0E-3",TT_FinMile,"55902",-,-,-,100,TK_Complete,08/08/2021,08/08/2021,08/08/2021,08/08/2021,"SI--URA2-101 FS,SI20URA2-75 FS","SI--URA2-101,SI20URA2-75","SI--URA2-102 FS","SI--URA2-102",53,53,53,53,12,12,12,12,25,,"HK1003 -Blackpoint D2 - Rev.0E DD30092021"
1-5699,SI--URA2-103,"(F) START ON SITE SUBSTRUCTURE-20URA/URD",5121,"HK1003-Rev.0E-3",TT_FinMile,"55902",-,-,-,100,TK_Complete,31/08/2021,31/08/2021,31/08/2021,31/08/2021,"SI--URA2-85 FS,SI20URA2-74 FS","SI--URA2-85,SI20URA2-74","SI20URA5-05 FS,SI20URA5-06 FS","SI20URA5-05,SI20URA5-06",56,56,56,56,13,13,13,13,27,,"HK1003 -Blackpoint D2 - Rev.0E DD30092021"
1-5700,SI20UBA3H56,"MANUFACTURING ELECTRICAL MODULES 20UBA7320",5121,"HK1003-Rev.0E-3",TT_Task,"55902",-,-,-,60,TK_Active,08/07/2021,08/07/2021,24/11/2021,,"SI--2222-30 FS,SI--UBA2G85 FS","SI--2222-30,SI--UBA2G85","SI20UBA4-71 FS,SI20UBA3H20#1 SS,SI20UBA3H20#1 FS","SI20UBA4-71,SI20UBA3H20#1,SI20UBA3H20#1",48,48,68,,11,11,16,,21,1496,"HK1003 -Blackpoint D2 - Rev.0E DD30092021"
1-5701,SI20UBA4-71,"(ET4b) ELECTRICAL MODULES AT WORKSHOP READY FOR COMPONENT INSTALLATION ELECTRICAL MODULES 20UBA7320",5121,"HK1003-Rev.0E-3",TT_Mile,"55902",-,-,-,0,TK_NotStart,17/12/2021,,17/12/2021,,"SI20UBA3H56 FS,SI20CJ-4-12 FS","SI20UBA3H56,SI20CJ-4-12","SI20UBA3H57 FS","SI20UBA3H57",71,,71,,16,,16,,42,1320,"HK1003 -Blackpoint D2 - Rev.0E DD30092021"
1-5702,SI20UBA2H2,"E-AND I&C- MANUALS FOR COMP.INSTALL.AVAILABLE ELECTRICAL MODULES 20UBA7320",5121,"HK1003-Rev.0E-3",TT_Mile,"55902",-,-,-,100,TK_Complete,30/06/2021,30/06/2021,30/06/2021,30/06/2021,"SI--UBA2G85 FS","SI--UBA2G85","SI20UBA3H57 FS","SI20UBA3H57",47,47,47,47,11,11,11,11,19,,"HK1003 -Blackpoint D2 - Rev.0E DD30092021"
1-5703,SI20UBA3H57,"INSTALL. COMP., INT. CABLING, FIRE PROT., SHOP TEST ELECTRICAL MODULES 20UBA7320",5121,"HK1003-Rev.0E-3",TT_Task,"55902",-,-,-,0,TK_NotStart,17/12/2021,,25/02/2022,,"SI20UBA4-71 FS,SI20UBA2H2 FS,SI20UBA4G62 FS","SI20UBA4-71,SI20UBA2H2,SI20UBA4G62","SI20UBA3H20#1 FF,SI20UBA4G64 FS","SI20UBA3H20#1,SI20UBA4G64",71,,81,,16,,19,,42,1320,"HK1003 -Blackpoint D2 - Rev.0E DD30092021"
1-5704,SI20UBA4G62,"(ET4a) I&C CUBICLES AT WORKSHOP READY FOR COMPONENT INSTALLATION 20UBA7320",5121,"HK1003-Rev.0E-3",TT_Mile,"55902",-,-,-,0,TK_NotStart,17/12/2021,,17/12/2021,,"SP20CJP3A11 FS,SP--CJJ3-10 FS,SI20CJ-4-10 FS,SI20CJ-4-12 FS","SP20CJP3A11,SP--CJJ3-10,SI20CJ-4-10,SI20CJ-4-12","SI20UBA3H57 FS","SI20UBA3H57",71,,71,,16,,16,,43,1320,"HK1003 -Blackpoint D2 - Rev.0E DD30092021"
1-5705,SI20UBA4G64,"TRANSPORT ELECTRICAL MODULES 20UBA7320 TO TESTING FACILITY",5121,"HK1003-Rev.0E-3",TT_Task,"55902",-,-,-,0,TK_NotStart,26/02/2022,,04/03/2022,,"SI20UBA3H57 FS,SI20UBA4G63 FS","SI20UBA3H57,SI20UBA4G63","SI20UBA4-72 FS","SI20UBA4-72",82,,82,,19,,19,,51,1320,"HK1003 -Blackpoint D2 - Rev.0E DD30092021"
1-5706,SI20UBA4G63,"(ET4a) LATEST DELIVERY DATE I&C CUBICLES (GT PACKAGE) FOR ASSEMBLY 20UBA7320",5121,"HK1003-Rev.0E-3",TT_Mile,"55902",-,-,-,0,TK_NotStart,17/12/2021,,17/12/2021,,"SP20CJP3A11 FS,SI20CJ-4-12 FS","SP20CJP3A11,SI20CJ-4-12","SI20UBA4G64 FS","SI20UBA4G64",71,,71,,16,,16,,43,1888,"HK1003 -Blackpoint D2 - Rev.0E DD30092021"
1-5707,SI20UBA4-72,"DELIVERY OF ELECTRICAL MODULESs AND COMPONENTS FOR ASSEMBLY IN TEST FACILITY  20UBA7320",5121,"HK1003-Rev.0E-3",TT_FinMile,"55902",-,-,-,0,TK_NotStart,04/03/2022,,04/03/2022,,"SI20UBA4G64 FS","SI20UBA4G64","SI20UBA3-95 FS","SI20UBA3-95",82,,82,,19,,19,,52,1320,"HK1003 -Blackpoint D2 - Rev.0E DD30092021"
1-5708,SI20UBA4B49,"LOGISTICS AND CUSTOMS PREPARATION ELECTRICAL MODULES 20UBA7320",5121,"HK1003-Rev.0E-3",TT_Task,"55902",-,-,-,0,TK_NotStart,30/04/2022,,27/05/2022,,"SI20UBA3B80 FS","SI20UBA3B80","SI20UBA3G91 FS","SI20UBA3G91",91,,94,,21,,22,,60,1320,"HK1003 -Blackpoint D2 - Rev.0E DD30092021"
1-5709,SI20UBA3B80,"TIMES OF COMPLETION (FINAL DATA IN KANLOG) ELECTRICAL MODULES 20UBA7320",5121,"HK1003-Rev.0E-3",TT_FinMile,"55902",-,-,-,0,TK_NotStart,29/04/2022,,29/04/2022,,"SI20UBA3-98 FS","SI20UBA3-98","SI20UBA4B49 FS","SI20UBA4B49",90,,90,,21,,21,,60,1320,"HK1003 -Blackpoint D2 - Rev.0E DD30092021"
1-5710,SI20UBA4G65,"TRANSPORT ELECTRICAL MODULES 20UBA7320 (TO SITE)",5121,"HK1003-Rev.0E-3",TT_Task,"55902",-,-,-,0,TK_NotStart,28/05/2022,,22/07/2022,,"SI20UBA3G91 FS","SI20UBA3G91","SI20UBA4B50 FS","SI20UBA4B50",95,,102,,22,,24,,67,1320,"HK1003 -Blackpoint D2 - Rev.0E DD30092021"
1-5711,SI20UBA3G91,"(RFS) READY FOR SHIPMENT TO SITE ELECTRICAL MODULES 20UBA7320(TO SITE)",5121,"HK1003-Rev.0E-3",TT_FinMile,"55902",-,-,-,0,TK_NotStart,27/05/2022,,27/05/2022,,"SI20UBA4B49 FS","SI20UBA4B49","SI20UBA4G65 FS","SI20UBA4G65",94,,94,,22,,22,,66,1320,"HK1003 -Blackpoint D2 - Rev.0E DD30092021"
1-5712,SI20UBA3-95,"TEST PREPARATION & ASSEMBLY  TEST FACILITY 20UBA7320",5121,"HK1003-Rev.0E-3",TT_Task,"55902",-,-,-,0,TK_NotStart,05/03/2022,,18/03/2022,,"SI20UBA4-72 FS","SI20UBA4-72","SI20UBA3-96 FS","SI20UBA3-96",83,,84,,19,,19,,52,1320,"HK1003 -Blackpoint D2 - Rev.0E DD30092021"
1-5713,SI20UBA3-96,"PRECOMMISSIONING TEST 20UBA7320",5121,"HK1003-Rev.0E-3",TT_Task,"55902",-,-,-,0,TK_NotStart,19/03/2022,,08/04/2022,,"SI20UBA3-95 FS","SI20UBA3-95","SI20UBA3-98 FS,SI20UBA3-97 FS","SI20UBA3-98,SI20UBA3-97",85,,87,,19,,20,,53,1320,"HK1003 -Blackpoint D2 - Rev.0E DD30092021"
1-5714,SI20UBA3-98,"CLEANING AND PACKING TEST FACILITY 20UBA7320",5121,"HK1003-Rev.0E-3",TT_Task,"55902",-,-,-,0,TK_NotStart,16/04/2022,,29/04/2022,,"SI20UBA3-96 FS,SI20UBA3-97 FS","SI20UBA3-96,SI20UBA3-97","SI20UBA3B80 FS","SI20UBA3B80",89,,90,,20,,21,,58,1320,"HK1003 -Blackpoint D2 - Rev.0E DD30092021"
1-5715,SI20UBA3-97,"ELECTRICAL MODULES 20UBA7320 FAT WITH CLIENT",5121,"HK1003-Rev.0E-3",TT_Task,"55902",-,-,-,0,TK_NotStart,09/04/2022,,15/04/2022,,"SI20UBA3-96 FS","SI20UBA3-96","SI20UBA3-98 FS","SI20UBA3-98",88,,88,,20,,20,,57,1320,"HK1003 -Blackpoint D2 - Rev.0E DD30092021"
1-5716,SI20CJ-4-12,"TRANSPORT TO WORKSHOP GT I&C CABINETS FOR ELECTRICAL MODULES 20UBA7320",5121,"HK1003-Rev.0E-3",TT_Task,"55902",-,-,-,0,TK_NotStart,11/12/2021,,16/12/2021,,"SI20CJ-3-55 FS","SI20CJ-3-55","SI20UBA4-71 FS,SI20UBA4G62 FS,SI20UBA4G63 FS","SI20UBA4-71,SI20UBA4G62,SI20UBA4G63",71,,71,,16,,16,,42,1320,"HK1003 -Blackpoint D2 - Rev.0E DD30092021"
1-5717,SI20CJ-3-55,"MANUFACTURING GT I&C CABINETS FOR ELECTRICAL MODULES 20UBA7320 AND OM EQUIP. FOR PRECOMMISSIONING TEST",5121,"HK1003-Rev.0E-3",TT_Task,"55902",-,-,-,0,TK_NotStart,16/10/2021,,10/12/2021,,"SI20CJ-2-53 FS,SI20CJ-3-54 FS","SI20CJ-2-53,SI20CJ-3-54","SI20CJ-4-12 FS","SI20CJ-4-12",63,,70,,14,,16,,34,1320,"HK1003 -Blackpoint D2 - Rev.0E DD30092021"
1-5718,SI20CJ-2-53,"(DF) GT/BOP I&C CABINETS FOR ELECTRICAL MODULES 20UBA7320",5121,"HK1003-Rev.0E-3",TT_Mile,"55902",-,-,-,100,TK_Complete,04/09/2021,04/09/2021,04/09/2021,04/09/2021,"SI--C--2C55 FS","SI--C--2C55","SI20CJ-3-55 FS,SI20CJ-3-54 SF","SI20CJ-3-55,SI20CJ-3-54",57,57,57,57,13,13,13,13,28,,"HK1003 -Blackpoint D2 - Rev.0E DD30092021"
1-5719,SI20CJ-3-54,"DETAIL DESIGN HW ENGINEERING GT I&C CABINETS FOR ELECTRICAL MODULES 20UBA20UBA7320",5121,"HK1003-Rev.0E-3",TT_Task,"55902",-,-,-,100,TK_Complete,26/04/2021,26/04/2021,30/08/2021,30/08/2021,"SI--C--2A40 FS,SI--C--2C55 FS,SI--C--2-85 FS,SI20CJ-2-53 SF","SI--C--2A40,SI--C--2C55,SI--C--2-85,SI20CJ-2-53","SI20CJ-3-55 FS","SI20CJ-3-55",38,38,56,56,8,8,13,13,10,,"HK1003 -Blackpoint D2 - Rev.0E DD30092021"
1-5720,SI20UBA7-107,"INSTALLATION ELECTRICAL MODULES 20UBA7320",5121,"HK1003-Rev.0E-3",TT_Task,"55902",-,-,-,0,TK_NotStart,24/07/2022,,13/08/2022,,"SI20UBA7-106 FS","SI20UBA7-106","SI20UBA7-108 FF","SI20UBA7-108",103,,106,,24,,24,,75,1320,"HK1003 -Blackpoint D2 - Rev.0E DD30092021"
1-5721,SI20UBA7-108,"CABLING INTERNAL 20UBA7320 - PART OF ELECTRICAL MODULES ASSEMBLY",5121,"HK1003-Rev.0E-3",TT_Task,"55902",-,-,-,0,TK_NotStart,31/07/2022,,13/08/2022,,"SI20UBA7-107 FF,SI20UBA7-106 FS","SI20UBA7-107,SI20UBA7-106","SI20BZK7B41 FS","SI20BZK7B41",104,,106,,24,,24,,76,1320,"HK1003 -Blackpoint D2 - Rev.0E DD30092021"
1-5722,SI20UBA7-106,"PLACING 20UBA7320",5121,"HK1003-Rev.0E-3",TT_Task,"55902",-,-,-,0,TK_NotStart,23/07/2022,,23/07/2022,,"SI20UBA4B50 FS,SI20UBA7-31 FS","SI20UBA4B50,SI20UBA7-31","SI20UBA7-107 FS,SI20UBA7-108 FS","SI20UBA7-107,SI20UBA7-108",103,,103,,24,,24,,75,1320,"HK1003 -Blackpoint D2 - Rev.0E DD30092021"
1-5723,SI20UBA4B50,"(OTD-OS) ON SITE (ET4d) ELECTRICAL MODULES 20UBA7320",5121,"HK1003-Rev.0E-3",TT_FinMile,"55902",-,-,-,0,TK_NotStart,22/07/2022,,22/07/2022,,"SI20UBA4G65 FS","SI20UBA4G65","SI20UBA7-106 FS","SI20UBA7-106",102,,102,,24,,24,,74,1320,"HK1003 -Blackpoint D2 - Rev.0E DD30092021"
1-5724,SP20MA-3-90,"MANUFACTURING MAW VALVES",5121,"HK1003-Rev.0E-3",TT_Task,"55902",-,-,-,33,TK_Active,05/07/2021,05/07/2021,25/03/2022,,"SP20MA-3-84 SS","SP20MA-3-84","SP20MA-3-91 FS","SP20MA-3-91",48,48,85,,11,11,20,,20,608,"HK1003 -Blackpoint D2 - Rev.0E DD30092021"
1-5725,SI20MA-6A63,"(RFS) READY FOR SHIPMENT TO SITE ST MAW VALVES",5121,"HK1003-Rev.0E-3",TT_FinMile,"55902",-,-,-,0,TK_NotStart,01/04/2022,,01/04/2022,,"SP20MA-4-13 FS","SP20MA-4-13","SI20MA-4-45 FS","SI20MA-4-45",86,,86,,20,,20,,55,608,"HK1003 -Blackpoint D2 - Rev.0E DD30092021"
1-5726,SI20MA-4-46,"(OTD-OS) ON SITE ST MAW  VALVES",5121,"HK1003-Rev.0E-3",TT_FinMile,"55902",-,-,-,0,TK_NotStart,06/04/2022,,06/04/2022,,"SI20MA-4-45 FS","SI20MA-4-45","SI20MAW6M13 FS,SI20MAW6M12 FS","SI20MAW6M13,SI20MAW6M12",87,,87,,20,,20,,56,608,"HK1003 -Blackpoint D2 - Rev.0E DD30092021"
1-5727,SI20MA-4-45,"TRANSPORT ST MAW  VALVES (AIR FREIGHT)",5121,"HK1003-Rev.0E-3",TT_Task,"55902",-,-,-,0,TK_NotStart,02/04/2022,,06/04/2022,,"SI20MA-6A63 FS,SP20MA-4-13 FS","SI20MA-6A63,SP20MA-4-13","SI20MA-4-46 FS","SI20MA-4-46",87,,87,,20,,20,,55,608,"HK1003 -Blackpoint D2 - Rev.0E DD30092021"
1-5728,SP20MA-4-13,"LOGISTICS AND CUSTOMS PREPARATION MAW VALVES",5121,"HK1003-Rev.0E-3",TT_Task,"55902",-,-,-,0,TK_NotStart,26/03/2022,,01/04/2022,,"SP20MA-3-91 FS","SP20MA-3-91","SI20MA-4-45 FS,SI20MA-6A63 FS","SI20MA-4-45,SI20MA-6A63",86,,86,,20,,20,,54,608,"HK1003 -Blackpoint D2 - Rev.0E DD30092021"
1-5729,SP20MA-3-91,"TIMES OF COMPLETION (FINAL DATA IN KANLOG) MAW VALVES",5121,"HK1003-Rev.0E-3",TT_FinMile,"55902",-,-,-,0,TK_NotStart,25/03/2022,,25/03/2022,,"SP20MA-3-90 FS","SP20MA-3-90","SP20MA-4-13 FS","SP20MA-4-13",85,,85,,20,,20,,54,608,"HK1003 -Blackpoint D2 - Rev.0E DD30092021"
1-5730,SI--BZL3-81,"MANUFACTURING /SHOP TEST LIGHTING & SMALL POWER BZL",5121,"HK1003-Rev.0E-3",TT_Task,"55902",-,-,-,0,TK_NotStart,03/02/2022,,03/05/2022,,"SI--BZL3-25 FS","SI--BZL3-25","SI--BZL3-70 FS","SI--BZL3-70",78,,91,,18,,21,,48,240,"HK1003 -Blackpoint D2 - Rev.0E DD30092021"
1-5731,SI20BZL7E19,"LIGHTING AND SMALL POWER INSTALLATION 01UEN",5121,"HK1003-Rev.0E-3",TT_Task,"55902",-,-,-,0,TK_NotStart,07/11/2022,,20/11/2022,,"SI20EK-7-15 FS,SI20UEN5-23 FS","SI20EK-7-15,SI20UEN5-23","SI20BZL8E26 FS","SI20BZL8E26",118,,120,,27,,28,,85,1192,"HK1003 -Blackpoint D2 - Rev.0E DD30092021"
1-5732,SI20BZL8E27,"COMMISSIONING LIGHTING/SMALL POWER IN 01UEN",5121,"HK1003-Rev.0E-3",TT_Task,"55902",-,-,-,0,TK_NotStart,21/11/2022,,27/11/2022,,"SI20BZL8E26 FS","SI20BZL8E26","SI--EK-8-08 FS","SI--EK-8-08",120,,121,,28,,28,,85,1192,"HK1003 -Blackpoint D2 - Rev.0E DD30092021"
1-5733,SI20BZL8E26,"(TOP-20BZL-xx) LIGHTING/SMALL POWER IN 01UEN",5121,"HK1003-Rev.0E-3",TT_FinMile,"55902",-,-,-,0,TK_NotStart,20/11/2022,,20/11/2022,,"SI20BZL7E19 FS","SI20BZL7E19","SI20BZL8E27 FS","SI20BZL8E27",120,,120,,28,,28,,85,1192,"HK1003 -Blackpoint D2 - Rev.0E DD30092021"
1-5734,SI20BZL7C16,"LIGHTING AND SMALL POWER 20UEN",5121,"HK1003-Rev.0E-3",TT_Task,"55902",-,-,-,0,TK_NotStart,12/03/2023,,25/03/2023,,"SI20EK-7-25 FS,SI20UEN5-45 FS","SI20EK-7-25,SI20UEN5-45","SI20UBA8-61 FS","SI20UBA8-61",136,,138,,31,,32,,92,664,"HK1003 -Blackpoint D2 - Rev.0E DD30092021"
1-5735,SI20UBA8-61,"(TOP-20UBA1) LIGHTING AND SMALL POWER 20UEN",5121,"HK1003-Rev.0E-3",TT_FinMile,"55902",-,-,-,0,TK_NotStart,25/03/2023,,25/03/2023,,"SI20BZL7C16 FS","SI20BZL7C16","SI20B--8-53 FS","SI20B--8-53",138,,138,,32,,32,,93,664,"HK1003 -Blackpoint D2 - Rev.0E DD30092021"
1-5736,SI20B--8-53,"COMMISSIONING LIGHTING AND SMALL POWER 20UEN",5121,"HK1003-Rev.0E-3",TT_Task,"55902",-,-,-,0,TK_NotStart,26/03/2023,,08/04/2023,,"SI20UBA8-61 FS","SI20UBA8-61","SI20MB-9-15 FS","SI20MB-9-15",138,,140,,32,,32,,93,664,"HK1003 -Blackpoint D2 - Rev.0E DD30092021"
1-5737,SI--UMC2B99,"BD - SUBMISSION & APPROVAL - STEEL PLATFORMS LOT1 20UMC CEP/LDK/CRANE WALKWAY STAIRCASE",5121,"HK1003-Rev.0E-3",TT_Task,"55902",-,-,-,90,TK_Active,02/07/2021,02/07/2021,09/10/2021,,"SI--UMC2E70 FS","SI--UMC2E70","SI--UMC2F75 FS","SI--UMC2F75",47,47,62,,11,11,14,,20,528,"HK1003 -Blackpoint D2 - Rev.0E DD30092021"
1-5738,SI20BAA3-72,"DETAIL DESIGN / MANUFACTURING / SHOP TEST IPB FIRST PARTS / SADDLES 20BAA",5121,"HK1003-Rev.0E-3",TT_Task,"55902",-,-,-,0,TK_NotStart,05/10/2021,,30/05/2022,,"SI20BAA3-25 SS","SI20BAA3-25","SI20BAA4-41 FS,SI20BAA3-71 FS","SI20BAA4-41,SI20BAA3-71",61,,95,,14,,22,,31,168,"HK1003 -Blackpoint D2 - Rev.0E DD30092021"
1-5739,SI20E--7-10&,"ELECTRICAL ERECTION FINISHED FOR OIL FLUSHING",5121,"HK1003-Rev.0E-3",TT_FinMile,"55902",-,-,-,0,TK_NotStart,03/02/2023,,03/02/2023,,"","","SI20MBV6-55 FS,SI20MAV6-55 FS","SI20MBV6-55,SI20MAV6-55",130,,130,,30,,30,,89,32,"HK1003 -Blackpoint D2 - Rev.0E DD30092021"
1-5740,SI20E--7-15&,"ELECTRICAL ERECTION FINISHED FOR 6.6kV/ 400kV BACK ENERGISING",5121,"HK1003-Rev.0E-3",TT_FinMile,"55902",-,-,-,0,TK_NotStart,31/12/2022,,31/12/2022,,"","","SI20B--8-52 FS,SI20B--8-50 FS","SI20B--8-52,SI20B--8-50",126,,126,,29,,29,,88,64,"HK1003 -Blackpoint D2 - Rev.0E DD30092021"
1-5741,SI20E--7-25&,"ELECTRICAL ERECTION FINISHED FOR 6.6kV STATION BOARD (90BBA-D1)",5121,"HK1003-Rev.0E-3",TT_FinMile,"55902",-,-,-,0,TK_NotStart,05/03/2023,,05/03/2023,,"","","SI20BBA8-46 FS","SI20BBA8-46",135,,135,,31,,31,,92,64,"HK1003 -Blackpoint D2 - Rev.0E DD30092021"
1-5742,SI20E--7-35&,"ELECTRICAL ERECTION FINISHED FOR 1ST. IGNITION GT",5121,"HK1003-Rev.0E-3",TT_FinMile,"55902",-,-,-,0,TK_NotStart,16/06/2023,,16/06/2023,,"","","SI20MB-9-15 FS","SI20MB-9-15",149,,149,,34,,34,,98,0,"HK1003 -Blackpoint D2 - Rev.0E DD30092021"
1-5743,SI20E--7-30&,"ELECTRICAL ERECTION FINISHED FOR 6.6kV STATION BOARD (90BBB-D1)",5121,"HK1003-Rev.0E-3",TT_FinMile,"55902",-,-,-,0,TK_NotStart,06/06/2023,,06/06/2023,,"","","SI20BBA8-47 FS","SI20BBA8-47",148,,148,,34,,34,,98,80,"HK1003 -Blackpoint D2 - Rev.0E DD30092021"
1-5744,SI20E--7-5&,"ELECTRICAL ERECTION CONTRACTOR MOBILISATION FINISHED",5121,"HK1003-Rev.0E-3",TT_FinMile,"55902",-,-,-,0,TK_NotStart,27/03/2022,,27/03/2022,,"SI--2227-68 FS","SI--2227-68","SI--PEE7-20 FS","SI--PEE7-20",86,,86,,20,,20,,54,328,"HK1003 -Blackpoint D2 - Rev.0E DD30092021"
1-5745,SI20UMC5A15.00,"TURBOSET FOUNDATION (SLAB +/-0.00m) 20UMC - Blinding",5121,"HK1003-Rev.0E-3",TT_Task,"55902",-,-,-,100,TK_Complete,14/07/2021,14/07/2021,23/07/2021,24/07/2021,"SI20UMC5A15 SS","SI20UMC5A15","SI20UMC5A15.01 FS","SI20UMC5A15.01",49,49,50,51,11,11,11,11,22,,"HK1003 -Blackpoint D2 - Rev.0E DD30092021"
1-5746,SI20UMC5A15.01,"TURBOSET FOUNDATION (SLAB +/-0.00m) 20UMC - Rebar bending",5121,"HK1003-Rev.0E-3",TT_Task,"55902",-,-,-,100,TK_Complete,29/07/2021,29/07/2021,14/08/2021,16/08/2021,"SI20UMC5A15.00 FS","SI20UMC5A15.00","SI20UMC5A15.02 FS","SI20UMC5A15.02",51,51,54,54,12,12,12,12,23,,"HK1003 -Blackpoint D2 - Rev.0E DD30092021"
1-5747,SI20UMC5A15.02,"TURBOSET FOUNDATION (SLAB +/-0.00m) 20UMC - Excavation",5121,"HK1003-Rev.0E-3",TT_Task,"55902",-,-,-,100,TK_Complete,07/08/2021,07/08/2021,09/08/2021,10/08/2021,"SI20UMC5A15.01 FS","SI20UMC5A15.01","SI20UMC5A15.03 FS","SI20UMC5A15.03",53,53,53,53,12,12,12,12,25,,"HK1003 -Blackpoint D2 - Rev.0E DD30092021"
1-5748,SI20UMC5A15.03,"TURBOSET FOUNDATION (SLAB +/-0.00m) 20UMC -Bituminous Paint",5121,"HK1003-Rev.0E-3",TT_Task,"55902",-,-,-,100,TK_Complete,13/08/2021,13/08/2021,17/08/2021,18/08/2021,"SI20UMC5A15.02 FS","SI20UMC5A15.02","SI20UMC5A15.04 FS","SI20UMC5A15.04",53,53,54,54,12,12,12,12,25,,"HK1003 -Blackpoint D2 - Rev.0E DD30092021"
1-5749,SI20UMC5A15.04,"TURBOSET FOUNDATION (SLAB +/-0.00m) 20UMC -Formwork Erection S1",5121,"HK1003-Rev.0E-3",TT_Task,"55902",-,-,-,100,TK_Complete,14/08/2021,14/08/2021,07/09/2021,07/09/2021,"SI20UMC5A15.03 FS","SI20UMC5A15.03","SI20UMC5A15.05 FF,SI20UMC5A15.09 FS","SI20UMC5A15.05,SI20UMC5A15.09",54,54,57,57,12,12,13,13,26,,"HK1003 -Blackpoint D2 - Rev.0E DD30092021"
1-5750,SI20UMC5A15.05,"TURBOSET FOUNDATION (SLAB +/-0.00m) 20UMC -Rebar Fixing Bottom Layer S1",5121,"HK1003-Rev.0E-3",TT_Task,"55902",-,-,-,100,TK_Complete,18/08/2021,18/08/2021,10/09/2021,10/09/2021,"SI20UMC5A15.04 FF","SI20UMC5A15.04","SI20UMC5A15.06 FF","SI20UMC5A15.06",54,54,57,57,12,12,13,13,26,,"HK1003 -Blackpoint D2 - Rev.0E DD30092021"
1-5751,SI20UMC5A15.06,"TURBOSET FOUNDATION (SLAB +/-0.00m) 20UMC -Grounding Installation",5121,"HK1003-Rev.0E-3",TT_Task,"55902",-,-,-,100,TK_Complete,25/08/2021,25/08/2021,17/09/2021,17/09/2021,"SI20UMC5A15.05 FF","SI20UMC5A15.05","SI20UMC5A15.07 SS","SI20UMC5A15.07",55,55,58,58,12,12,13,13,27,,"HK1003 -Blackpoint D2 - Rev.0E DD30092021"
1-5752,SI20UMC5A15.07,"TURBOSET FOUNDATION (SLAB +/-0.00m) 20UMC -Working Platform Erection",5121,"HK1003-Rev.0E-3",TT_Task,"55902",-,-,-,100,TK_Complete,04/09/2021,04/09/2021,25/09/2021,25/09/2021,"SI20UMC5A15.06 SS","SI20UMC5A15.06","SI20UMC5A15.08 SS","SI20UMC5A15.08",57,57,60,60,13,13,14,14,28,,"HK1003 -Blackpoint D2 - Rev.0E DD30092021"
1-5753,SI20UMC5A15.08,"TURBOSET FOUNDATION (SLAB +/-0.00m) 20UMC -Installation Drain Pipes&Conduits",5121,"HK1003-Rev.0E-3",TT_Task,"55902",-,-,-,100,TK_Complete,15/09/2021,15/09/2021,23/09/2021,23/09/2021,"SI20UMC5A15.07 SS","SI20UMC5A15.07","SI20UMC5A15.10 FS","SI20UMC5A15.10",58,58,59,59,13,13,13,13,29,,"HK1003 -Blackpoint D2 - Rev.0E DD30092021"
1-5754,SI20UMC5A15.09,"TURBOSET FOUNDATION (SLAB +/-0.00m) 20UMC -Rebar Fixing Top Layer",5121,"HK1003-Rev.0E-3",TT_Task,"55902",-,-,-,100,TK_Complete,08/09/2021,08/09/2021,25/09/2021,25/09/2021,"SI20UMC5A15.04 FS","SI20UMC5A15.04","SI20UMC5A15.10 FF","SI20UMC5A15.10",57,57,60,60,13,13,14,14,29,,"HK1003 -Blackpoint D2 - Rev.0E DD30092021"
1-5755,SI20UMC5A15.10,"TURBOSET FOUNDATION (SLAB +/-0.00m) 20UMC -Installation of Cast-In Items",5121,"HK1003-Rev.0E-3",TT_Task,"55902",-,-,-,46,TK_Active,24/09/2021,24/09/2021,06/10/2021,,"SI20UMC5A15.09 FF,SI20UMC5A15.08 FS","SI20UMC5A15.09,SI20UMC5A15.08","SI20UMC5A15.11 FS","SI20UMC5A15.11",59,59,61,,13,13,14,,30,96,"HK1003 -Blackpoint D2 - Rev.0E DD30092021"
1-5756,SI20UMC5A15.11,"TURBOSET FOUNDATION (SLAB +/-0.00m) 20UMC -Concrete Pour",5121,"HK1003-Rev.0E-3",TT_Task,"55902",-,-,-,0,TK_NotStart,07/10/2021,,07/10/2021,,"SI20UMC5A15.10 FS,SI20UMC2B71 FS","SI20UMC5A15.10,SI20UMC2B71","SI20UMC5A15.12 FS,SI20UMC5B75.00 FS","SI20UMC5A15.12,SI20UMC5B75.00",61,,61,,14,,14,,32,96,"HK1003 -Blackpoint D2 - Rev.0E DD30092021"
1-5757,SI20UMC5A15.12,"TURBOSET FOUNDATION (SLAB +/-0.00m) 20UMC -Curing",5121,"HK1003-Rev.0E-3",TT_Task,"55902",-,-,-,0,TK_NotStart,08/10/2021,,15/10/2021,,"SI20UMC5A15.11 FS","SI20UMC5A15.11","SI20UMC5A15.13 FS,SI20UMC5A15.15 FS","SI20UMC5A15.13,SI20UMC5A15.15",61,,62,,14,,14,,32,144,"HK1003 -Blackpoint D2 - Rev.0E DD30092021"
1-5758,SI20UMC5A15.13,"TURBOSET FOUNDATION (SLAB +/-0.00m) 20UMC -Dismantling Formworks",5121,"HK1003-Rev.0E-3",TT_Task,"55902",-,-,-,0,TK_NotStart,16/10/2021,,19/10/2021,,"SI20UMC5A15.12 FS","SI20UMC5A15.12","SI20UMC5A15.14 FS,SI20UMC5A15.15 FS","SI20UMC5A15.14,SI20UMC5A15.15",63,,63,,14,,14,,34,144,"HK1003 -Blackpoint D2 - Rev.0E DD30092021"
1-5759,SI20UMC5A15.14,"TURBOSET FOUNDATION (SLAB +/-0.00m) 20UMC -Backfilling",5121,"HK1003-Rev.0E-3",TT_Task,"55902",-,-,-,0,TK_NotStart,20/10/2021,,25/10/2021,,"SI20UMC5A15.13 FS","SI20UMC5A15.13","SI20UMC5A45 FS","SI20UMC5A45",63,,64,,14,,15,,35,1000,"HK1003 -Blackpoint D2 - Rev.0E DD30092021"
1-5760,SI20UMC5A15.15,"(RFE) TURBOSET FOUNDATION (SLAB +/-0.00m) 20UMC -Completed",5121,"HK1003-Rev.0E-3",TT_FinMile,"55902",-,-,-,0,TK_NotStart,19/10/2021,,19/10/2021,,"SI20UMC5A15 FF,SI20UMC5A15.12 FS,SI20UMC5A15.13 FS","SI20UMC5A15,SI20UMC5A15.12,SI20UMC5A15.13","SI20UMC5A25 FS","SI20UMC5A25",63,,63,,14,,14,,35,144,"HK1003 -Blackpoint D2 - Rev.0E DD30092021"
1-5761,SI20UMC5Y46.00,"CONSTRUCTION CEP PIT - Vertical Blinding (Lvl +2.50m)-Formwork Erection",5121,"HK1003-Rev.0E-3",TT_Task,"55902",-,-,-,100,TK_Complete,29/07/2021,29/07/2021,31/07/2021,01/08/2021,"","","SI20UMC5Y46.01 FS,SI20UMC5Y46 SS","SI20UMC5Y46.01,SI20UMC5Y46",51,51,52,52,12,12,12,12,23,,"HK1003 -Blackpoint D2 - Rev.0E DD30092021"
1-5762,SI20UMC5Y46.01,"CONSTRUCTION CEP PIT - Vertical Blinding (Lvl +2.50m)-Concrete Pour",5121,"HK1003-Rev.0E-3",TT_Task,"55902",-,-,-,100,TK_Complete,02/08/2021,02/08/2021,02/08/2021,03/08/2021,"SI20UMC5Y46.00 FS","SI20UMC5Y46.00","SI20UMC5Y46.02 FS","SI20UMC5Y46.02",52,52,52,52,12,12,12,12,24,,"HK1003 -Blackpoint D2 - Rev.0E DD30092021"
1-5763,SI20UMC5Y46.02,"CONSTRUCTION CEP PIT - Base Slab S1(Lvl +1.80m)-Damp Proofing",5121,"HK1003-Rev.0E-3",TT_Task,"55902",-,-,-,100,TK_Complete,10/08/2021,10/08/2021,11/08/2021,12/08/2021,"SI20UMC5Y46.01 FS","SI20UMC5Y46.01","SI20UMC5Y46.03 FS","SI20UMC5Y46.03",53,53,53,53,12,12,12,12,25,,"HK1003 -Blackpoint D2 - Rev.0E DD30092021"
1-5764,SI20UMC5Y47.01,"CONSTRUCTION LDK PIT - Vertical Blinding (Lvl +0.75m)-Concrete Pour",5121,"HK1003-Rev.0E-3",TT_Task,"55902",-,-,-,100,TK_Complete,03/08/2021,03/08/2021,03/08/2021,04/08/2021,"SI20UMC5Y47.00 FS","SI20UMC5Y47.00","SI20UMC5Y47.02 FS","SI20UMC5Y47.02",52,52,52,52,12,12,12,12,24,,"HK1003 -Blackpoint D2 - Rev.0E DD30092021"
1-5765,SI20UMC5Y47.00,"CONSTRUCTION LDK PIT - Vertical Blinding (Lvl +0.75m)-Formwork Erection",5121,"HK1003-Rev.0E-3",TT_Task,"55902",-,-,-,100,TK_Complete,02/08/2021,02/08/2021,02/08/2021,03/08/2021,"","","SI20UMC5Y47.01 FS","SI20UMC5Y47.01",52,52,52,52,12,12,12,12,24,,"HK1003 -Blackpoint D2 - Rev.0E DD30092021"
1-5766,SI20UMC5Y47.02,"CONSTRUCTION LDK PIT - Vertical Blinding (Lvl +0.75m)-Dismantle Formworks",5121,"HK1003-Rev.0E-3",TT_Task,"55902",-,-,-,100,TK_Complete,04/08/2021,04/08/2021,04/08/2021,05/08/2021,"SI20UMC5Y47.01 FS","SI20UMC5Y47.01","SI20UMC5Y47.03 FS","SI20UMC5Y47.03",52,52,52,52,12,12,12,12,24,,"HK1003 -Blackpoint D2 - Rev.0E DD30092021"
1-5767,SI20UMC5Y47.04,"CONSTRUCTION LDK PIT - Base Slab(Lvl +0.65m)-Rebar Fixing&Grounding Installattion",5121,"HK1003-Rev.0E-3",TT_Task,"55902",-,-,-,100,TK_Complete,09/08/2021,09/08/2021,11/08/2021,12/08/2021,"SI20UMC5Y47.03 FS","SI20UMC5Y47.03","SI20UMC5Y47.05 FS","SI20UMC5Y47.05",53,53,53,53,12,12,12,12,25,,"HK1003 -Blackpoint D2 - Rev.0E DD30092021"
1-5768,SI20UMC5Y47.03,"CONSTRUCTION LDK PIT - Base Slab(Lvl +0.65m)-Damp Proofing",5121,"HK1003-Rev.0E-3",TT_Task,"55902",-,-,-,100,TK_Complete,06/08/2021,06/08/2021,06/08/2021,07/08/2021,"SI20UMC5Y47.02 FS","SI20UMC5Y47.02","SI20UMC5Y47.04 FS","SI20UMC5Y47.04",52,52,52,53,12,12,12,12,25,,"HK1003 -Blackpoint D2 - Rev.0E DD30092021"
1-5769,SI20UMC5Y47.05,"CONSTRUCTION LDK PIT - Base Slab(Lvl +0.65m)-Formwork Erection&Installation of cast-in elements",5121,"HK1003-Rev.0E-3",TT_Task,"55902",-,-,-,100,TK_Complete,12/08/2021,12/08/2021,13/08/2021,14/08/2021,"SI20UMC5Y47.04 FS","SI20UMC5Y47.04","SI20UMC5Y47.06 FS","SI20UMC5Y47.06",53,53,53,54,12,12,12,12,25,,"HK1003 -Blackpoint D2 - Rev.0E DD30092021"
1-5770,SI20UMC5Y47.06,"CONSTRUCTION LDK PIT - Base Slab(Lvl +0.65m)-Concrete Pour",5121,"HK1003-Rev.0E-3",TT_Task,"55902",-,-,-,100,TK_Complete,14/08/2021,14/08/2021,14/08/2021,15/08/2021,"SI20UMC5Y47.05 FS","SI20UMC5Y47.05","SI20UMC5Y47.07 FS","SI20UMC5Y47.07",54,54,54,54,12,12,12,12,26,,"HK1003 -Blackpoint D2 - Rev.0E DD30092021"
1-5771,SI--UMC2A87,"BD - SUBMISSION & APPROVAL - TURBOSET DETAIL DESIGN CONCRETE 1ST SUBMISSION (PLINTH)",5121,"HK1003-Rev.0E-3",TT_Task,"55902",-,-,-,100,TK_Complete,17/05/2021,17/05/2021,17/08/2021,18/08/2021,"","","SI--UMC2A89 FS","SI--UMC2A89",41,41,54,54,9,9,12,12,13,,"HK1003 -Blackpoint D2 - Rev.0E DD30092021"
1-5772,SI--UMC2A88,"BD - SUBMISSION & APPROVAL - TURBOSET DETAIL DESIGN CONCRETE 1ST AMMENDMENT 20UMC (PLINTH-Openings)",5121,"HK1003-Rev.0E-3",TT_Task,"55902",-,-,-,23,TK_Active,23/09/2021,23/09/2021,22/10/2021,,"SI--UMC2A89 FS","SI--UMC2A89","SI20UMC5A46 FS","SI20UMC5A46",59,59,63,,13,13,14,,30,1128,"HK1003 -Blackpoint D2 - Rev.0E DD30092021"
1-5773,SI--UMC2A89,"BD - IMPLEMENTATION OF COMMENTS - TURBOSET DETAIL DESIGN CONCRETE 1ST SUBMISSION (PLINTH)",5121,"HK1003-Rev.0E-3",TT_Task,"55902",-,-,-,100,TK_Complete,19/08/2021,19/08/2021,22/09/2021,22/09/2021,"SI--UMC2A87 FS","SI--UMC2A87","SI--UMC2A88 FS","SI--UMC2A88",54,54,59,59,12,12,13,13,26,,"HK1003 -Blackpoint D2 - Rev.0E DD30092021"
1-5774,SI20UEN2-110,"(MS3) CONCRETE STRUCTURE FINAL DIMENSIONS, LOADS AVAILABLE 01UEN NON PILED",5121,"HK1003-Rev.0E-3",TT_FinMile,"55902",-,-,-,100,TK_Complete,06/09/2021,06/09/2021,06/09/2021,06/09/2021,"SI20UEN2-60 FS","SI20UEN2-60","SI20UEN2-90 FF","SI20UEN2-90",57,57,57,57,13,13,13,13,28,,"HK1003 -Blackpoint D2 - Rev.0E DD30092021"
1-5775,SI--UBA2-111,"(MS3) CONCRETE STRUCTURE FINAL DIMENSIONS, LOADS AVAILABLE UBA7910/7920 NON PILED",5121,"HK1003-Rev.0E-3",TT_FinMile,"55902",-,-,-,100,TK_Complete,10/08/2021,10/08/2021,10/08/2021,10/08/2021,"SI--UBA2-60 FS","SI--UBA2-60","SI--UBA2-70 FS","SI--UBA2-70",53,53,53,53,12,12,12,12,25,,"HK1003 -Blackpoint D2 - Rev.0E DD30092021"
1-5776,SI--UBA2F62,"(MS3) STEEL STRUCTURE FINAL DIMENSIONS, LOADS AVAILABLE 20UBA7910/20 NON PILED",5121,"HK1003-Rev.0E-3",TT_FinMile,"55902",-,-,-,0,TK_NotStart,15/10/2021,,15/10/2021,,"SI--UBA2F61 FS","SI--UBA2F61","SI--UBA2B98 FF","SI--UBA2B98",62,,62,,14,,14,,34,1400,"HK1003 -Blackpoint D2 - Rev.0E DD30092021"
1-5777,SI-UZA2-96.00,"SUBBASE RING ROAD INCL. (U/G) DRAINAGE SYSTEM - PART 1A - Excavation /Stripping",5121,"HK1003-Rev.0E-3",TT_Task,"55902",-,-,-,0,TK_NotStart,08/10/2021,,31/10/2021,,"SI-UZA2-60 FS","SI-UZA2-60","SI-UZA2-96.01 SS,SI-UZA2-96 SS","SI-UZA2-96.01,SI-UZA2-96",61,,65,,14,,15,,32,872,"HK1003 -Blackpoint D2 - Rev.0E DD30092021"
1-5778,SI-UZA2-96.01,"SUBBASE RING ROAD INCL. (U/G) DRAINAGE SYSTEM - PART 1A - Laying base course and compaction",5121,"HK1003-Rev.0E-3",TT_Task,"55902",-,-,-,0,TK_NotStart,16/10/2021,,30/10/2021,,"SI-UZA2-96.00 SS","SI-UZA2-96.00","SI-UZA2-96.02 SS","SI-UZA2-96.02",63,,65,,14,,15,,34,872,"HK1003 -Blackpoint D2 - Rev.0E DD30092021"
1-5779,SI-UZA2-96.02,"SUBBASE RING ROAD INCL. (U/G) DRAINAGE SYSTEM - PART 1A - Laying sub base and compaction",5121,"HK1003-Rev.0E-3",TT_Task,"55902",-,-,-,0,TK_NotStart,23/10/2021,,06/11/2021,,"SI-UZA2-96.01 SS","SI-UZA2-96.01","SI-UZA2-96.03 SS,SI-UZA2-96.04 SS","SI-UZA2-96.03,SI-UZA2-96.04",64,,66,,14,,15,,36,872,"HK1003 -Blackpoint D2 - Rev.0E DD30092021"
1-5780,SI-UZA2-96.03,"SUBBASE RING ROAD INCL. (U/G) DRAINAGE SYSTEM - PART 1A - Sub Finishing",5121,"HK1003-Rev.0E-3",TT_Task,"55902",-,-,-,0,TK_NotStart,30/10/2021,,14/11/2021,,"SI-UZA2-96.02 SS","SI-UZA2-96.02","SI-UZA2-96 FF,SI-UZA2-99.00 FS","SI-UZA2-96,SI-UZA2-99.00",65,,67,,15,,15,,36,1136,"HK1003 -Blackpoint D2 - Rev.0E DD30092021"
1-5781,SI-UZA2-97.00,"SUBBASE RING ROAD INCL.  (U/G) DRAINAGE SYSTEM - PART 1B - Excavation /Stripping",5121,"HK1003-Rev.0E-3",TT_Task,"55902",-,-,-,0,TK_NotStart,15/01/2022,,29/01/2022,,"SI-UZA2-70 FS,SI-UZA2-99.03 FS","SI-UZA2-70,SI-UZA2-99.03","SI-UZA2-97.01 FS,SI-UZA2-97 SS,SI-UZA2-101.00 SS","SI-UZA2-97.01,SI-UZA2-97,SI-UZA2-101.00",76,,78,,17,,18,,45,872,"HK1003 -Blackpoint D2 - Rev.0E DD30092021"
1-5782,SI-UZA2-97.01,"SUBBASE RING ROAD INCL.  (U/G) DRAINAGE SYSTEM - PART 1B - Laying base course and compaction",5121,"HK1003-Rev.0E-3",TT_Task,"55902",-,-,-,0,TK_NotStart,30/01/2022,,08/02/2022,,"SI-UZA2-97.00 FS","SI-UZA2-97.00","SI-UZA2-97.02 FS","SI-UZA2-97.02",78,,79,,18,,18,,47,872,"HK1003 -Blackpoint D2 - Rev.0E DD30092021"
1-5783,SI-UZA2-97.02,"SUBBASE RING ROAD INCL.  (U/G) DRAINAGE SYSTEM - PART 1B - Laying sub base and compaction",5121,"HK1003-Rev.0E-3",TT_Task,"55902",-,-,-,0,TK_NotStart,09/02/2022,,18/02/2022,,"SI-UZA2-97.01 FS","SI-UZA2-97.01","SI-UZA2-97.03 FS","SI-UZA2-97.03",79,,80,,18,,18,,49,872,"HK1003 -Blackpoint D2 - Rev.0E DD30092021"
1-5784,SI-UZA2-97.03,"SUBBASE RING ROAD INCL.  (U/G) DRAINAGE SYSTEM - PART 1B - Sub Finishing",5121,"HK1003-Rev.0E-3",TT_Task,"55902",-,-,-,0,TK_NotStart,19/02/2022,,25/02/2022,,"SI-UZA2-97.02 FS","SI-UZA2-97.02","SI-UZA2-97 FF,SI-UZA2-98.00 FS","SI-UZA2-97,SI-UZA2-98.00",81,,81,,18,,19,,50,872,"HK1003 -Blackpoint D2 - Rev.0E DD30092021"
1-5785,SI-UZA2-98.01,"SUBBASE RING ROAD INCL.  (U/G) DRAINAGE SYSTEM - PART 1C - Laying base course and compaction",5121,"HK1003-Rev.0E-3",TT_Task,"55902",-,-,-,0,TK_NotStart,13/03/2022,,22/03/2022,,"SI-UZA2-98.00 FS","SI-UZA2-98.00","SI-UZA2-98.02 FS","SI-UZA2-98.02",84,,85,,19,,19,,52,872,"HK1003 -Blackpoint D2 - Rev.0E DD30092021"
1-5786,SI-UZA2-98.00,"SUBBASE RING ROAD INCL.  (U/G) DRAINAGE SYSTEM - PART 1C - Excavation /Stripping",5121,"HK1003-Rev.0E-3",TT_Task,"55902",-,-,-,0,TK_NotStart,26/02/2022,,12/03/2022,,"SI-UZA2-60 FS,SI-UZA2-70 FS,SI-UZA2-97.03 FS","SI-UZA2-60,SI-UZA2-70,SI-UZA2-97.03","SI-UZA2-98.01 FS,SI-UZA2-98 SS","SI-UZA2-98.01,SI-UZA2-98",82,,84,,19,,19,,51,872,"HK1003 -Blackpoint D2 - Rev.0E DD30092021"
1-5787,SI-UZA2-98.02,"SUBBASE RING ROAD INCL.  (U/G) DRAINAGE SYSTEM - PART 1C - Laying sub base and compaction",5121,"HK1003-Rev.0E-3",TT_Task,"55902",-,-,-,0,TK_NotStart,23/03/2022,,01/04/2022,,"SI-UZA2-98.01 FS","SI-UZA2-98.01","SI-UZA2-98.03 FS","SI-UZA2-98.03",85,,86,,19,,20,,53,872,"HK1003 -Blackpoint D2 - Rev.0E DD30092021"
1-5788,SI-UZA2-98.03,"SUBBASE RING ROAD INCL.  (U/G) DRAINAGE SYSTEM - PART 1C - Sub Finishing",5121,"HK1003-Rev.0E-3",TT_Task,"55902",-,-,-,0,TK_NotStart,02/04/2022,,08/04/2022,,"SI-UZA2-98.02 FS","SI-UZA2-98.02","SI-UZA2-98 FF,SI-UZA2-90 FS","SI-UZA2-98,SI-UZA2-90",87,,87,,20,,20,,55,872,"HK1003 -Blackpoint D2 - Rev.0E DD30092021"
1-5789,SI-UZA2-99.00,"SUBBASE RING ROAD INCL.  (U/G) DRAINAGE SYSTEM - PART 2A - Excavation /Stripping",5121,"HK1003-Rev.0E-3",TT_Task,"55902",-,-,-,0,TK_NotStart,18/12/2021,,25/12/2021,,"SI--SG-2-38 FS,SI20PAB5-105 SS,SI-UZA2-96.03 FS,SI-UZA2-96.04 FS","SI--SG-2-38,SI20PAB5-105,SI-UZA2-96.03,SI-UZA2-96.04","SI-UZA2-99.01 FS,SI-UZA2-99 SS","SI-UZA2-99.01,SI-UZA2-99",72,,73,,16,,17,,43,872,"HK1003 -Blackpoint D2 - Rev.0E DD30092021"
1-5790,SI-UZA2-99.01,"SUBBASE RING ROAD INCL.  (U/G) DRAINAGE SYSTEM - PART 2A - Laying base course and compaction",5121,"HK1003-Rev.0E-3",TT_Task,"55902",-,-,-,0,TK_NotStart,26/12/2021,,01/01/2022,,"SI-UZA2-99.00 FS","SI-UZA2-99.00","SI-UZA2-99.02 FS","SI-UZA2-99.02",73,,74,,17,,17,,43,872,"HK1003 -Blackpoint D2 - Rev.0E DD30092021"
1-5791,SI-UZA2-99.02,"SUBBASE RING ROAD INCL.  (U/G) DRAINAGE SYSTEM - PART 2A - Laying sub base and compaction",5121,"HK1003-Rev.0E-3",TT_Task,"55902",-,-,-,0,TK_NotStart,02/01/2022,,08/01/2022,,"SI-UZA2-99.01 FS","SI-UZA2-99.01","SI-UZA2-99.03 FS","SI-UZA2-99.03",74,,75,,17,,17,,44,872,"HK1003 -Blackpoint D2 - Rev.0E DD30092021"
1-5792,SI-UZA2-99.03,"SUBBASE RING ROAD INCL.  (U/G) DRAINAGE SYSTEM - PART 2A -  Sub Finishing",5121,"HK1003-Rev.0E-3",TT_Task,"55902",-,-,-,0,TK_NotStart,09/01/2022,,14/01/2022,,"SI-UZA2-99.02 FS","SI-UZA2-99.02","SI-UZA2-99 FF,SI-UZA2-97.00 FS","SI-UZA2-99,SI-UZA2-97.00",75,,75,,17,,17,,44,872,"HK1003 -Blackpoint D2 - Rev.0E DD30092021"
1-5793,SI20UHW5-20.01,"WORK PREPARATION, EXCAVATION 20UHW - Formworks for vertical blinding",5121,"HK1003-Rev.0E-3",TT_Task,"55902",-,-,-,0,TK_NotStart,02/10/2021,,07/10/2021,,"","","SI20UHW5-20.02 FS","SI20UHW5-20.02",61,,61,,14,,14,,31,240,"HK1003 -Blackpoint D2 - Rev.0E DD30092021"
1-5794,SI20UHW5-20.00,"WORK PREPARATION, EXCAVATION 20UHW - Blinding work to bottom pit",5121,"HK1003-Rev.0E-3",TT_Task,"55902",-,-,-,100,TK_Complete,22/07/2021,22/07/2021,08/08/2021,09/08/2021,"","","","",50,50,53,53,11,11,12,12,22,,"HK1003 -Blackpoint D2 - Rev.0E DD30092021"
1-5795,SI20UHW5-20.02,"WORK PREPARATION, EXCAVATION 20UHW - Concreting for vertical blinding",5121,"HK1003-Rev.0E-3",TT_Task,"55902",-,-,-,0,TK_NotStart,08/10/2021,,10/10/2021,,"SI20UHW5-20.01 FS","SI20UHW5-20.01","SI20UHW5-20.03 FS","SI20UHW5-20.03",61,,62,,14,,14,,32,240,"HK1003 -Blackpoint D2 - Rev.0E DD30092021"
1-5796,SI20UHW5-20.03,"WORK PREPARATION, EXCAVATION 20UHW - Removal of formworks and apply damproofing",5121,"HK1003-Rev.0E-3",TT_Task,"55902",-,-,-,0,TK_NotStart,11/10/2021,,12/10/2021,,"SI20UHW5-20.02 FS","SI20UHW5-20.02","SI20UHW5-20 FF,SI20UHW5-60 FS","SI20UHW5-20,SI20UHW5-60",62,,62,,14,,14,,33,240,"HK1003 -Blackpoint D2 - Rev.0E DD30092021"
1-5797,SI20UHW5-70.00,"CONSTRUCTION STRUCTURE HRSG BLOWDOWN PIT 20UHW - Rebar fixing sump pit",5121,"HK1003-Rev.0E-3",TT_Task,"55902",-,-,-,0,TK_NotStart,13/10/2021,,20/10/2021,,"SI20UHW5-60 FS","SI20UHW5-60","SI20UHW5-70.01 FS","SI20UHW5-70.01",62,,63,,14,,14,,34,240,"HK1003 -Blackpoint D2 - Rev.0E DD30092021"
1-5798,SI20UHW5-70.01,"CONSTRUCTION STRUCTURE HRSG BLOWDOWN PIT 20UHW - Formwork erection for side of sump pit",5121,"HK1003-Rev.0E-3",TT_Task,"55902",-,-,-,0,TK_NotStart,21/10/2021,,25/10/2021,,"SI20UHW5-70.00 FS","SI20UHW5-70.00","SI20UHW5-70.02 FS","SI20UHW5-70.02",63,,64,,14,,15,,35,240,"HK1003 -Blackpoint D2 - Rev.0E DD30092021"
1-5799,SI20UHW5-70.02,"CONSTRUCTION STRUCTURE HRSG BLOWDOWN PIT 20UHW - Concreting of sump pit",5121,"HK1003-Rev.0E-3",TT_Task,"55902",-,-,-,0,TK_NotStart,26/10/2021,,26/10/2021,,"SI20UHW5-70.01 FS","SI20UHW5-70.01","SI20UHW5-70.03 FS","SI20UHW5-70.03",64,,64,,15,,15,,36,240,"HK1003 -Blackpoint D2 - Rev.0E DD30092021"
1-5800,SI20UHW5-70.03,"CONSTRUCTION STRUCTURE HRSG BLOWDOWN PIT 20UHW - Rebar fixing and grounding installation for base slab (1st Pour)",5121,"HK1003-Rev.0E-3",TT_Task,"55902",-,-,-,0,TK_NotStart,27/10/2021,,17/11/2021,,"SI20UHW5-70.02 FS","SI20UHW5-70.02","SI20UHW5-70.04 FS","SI20UHW5-70.04",64,,67,,15,,15,,36,240,"HK1003 -Blackpoint D2 - Rev.0E DD30092021"
1-5801,SI20UHW5-70.04,"CONSTRUCTION STRUCTURE HRSG BLOWDOWN PIT 20UHW - Concreting for base slab (1st Pour)",5121,"HK1003-Rev.0E-3",TT_Task,"55902",-,-,-,0,TK_NotStart,18/11/2021,,18/11/2021,,"SI20UHW5-70.03 FS,SI20UHW2-52 FS","SI20UHW5-70.03,SI20UHW2-52","SI20UHW5-70.05 FS","SI20UHW5-70.05",67,,67,,15,,15,,39,240,"HK1003 -Blackpoint D2 - Rev.0E DD30092021"
1-5802,SI20UHW5-70.05,"CONSTRUCTION STRUCTURE HRSG BLOWDOWN PIT 20UHW - Rebar fixing of wall in pit (2nd Pour)",5121,"HK1003-Rev.0E-3",TT_Task,"55902",-,-,-,0,TK_NotStart,19/11/2021,,06/12/2021,,"SI20UHW5-70.04 FS","SI20UHW5-70.04","SI20UHW5-70.06 FS","SI20UHW5-70.06",67,,70,,15,,16,,39,240,"HK1003 -Blackpoint D2 - Rev.0E DD30092021"
1-5803,SI20UHW5-70.06,"CONSTRUCTION STRUCTURE HRSG BLOWDOWN PIT 20UHW - Formwork for wal in pit (2nd pour)",5121,"HK1003-Rev.0E-3",TT_Task,"55902",-,-,-,0,TK_NotStart,07/12/2021,,17/12/2021,,"SI20UHW5-70.05 FS","SI20UHW5-70.05","SI20UHW5-70.07 FS","SI20UHW5-70.07",70,,71,,16,,16,,41,240,"HK1003 -Blackpoint D2 - Rev.0E DD30092021"
1-5804,SI20UHW5-70.07,"CONSTRUCTION STRUCTURE HRSG BLOWDOWN PIT 20UHW - Concreting for wal in pit (2nd pour)",5121,"HK1003-Rev.0E-3",TT_Task,"55902",-,-,-,0,TK_NotStart,18/12/2021,,18/12/2021,,"SI20UHW5-70.06 FS","SI20UHW5-70.06","SI20UHW5-70.08 FS","SI20UHW5-70.08",72,,72,,16,,16,,43,240,"HK1003 -Blackpoint D2 - Rev.0E DD30092021"
1-5805,SI20UHW5-70.08,"CONSTRUCTION STRUCTURE HRSG BLOWDOWN PIT 20UHW - Curing and dismantling",5121,"HK1003-Rev.0E-3",TT_Task,"55902",-,-,-,0,TK_NotStart,19/12/2021,,24/12/2021,,"SI20UHW5-70.07 FS","SI20UHW5-70.07","SI20UHW5-75 FS,SI20UHW5-70 FF","SI20UHW5-75,SI20UHW5-70",72,,72,,16,,17,,43,240,"HK1003 -Blackpoint D2 - Rev.0E DD30092021"
1-5806,SI20UHA5-15.00,"CONSTRUCTION FOUNDATION 20UHA - Rebar fixing and grounding installation for base slab part1- left side -15m",5121,"HK1003-Rev.0E-3",TT_Task,"55902",-,-,-,6,TK_Active,02/10/2021,29/09/2021,18/10/2021,,"SI20UHA5-10 FS","SI20UHA5-10","SI20UHA5-15.01 SS,SI20UHA5-15.02 FS","SI20UHA5-15.01,SI20UHA5-15.02",61,60,63,,14,14,14,,31,104,"HK1003 -Blackpoint D2 - Rev.0E DD30092021"
1-5807,SI20UHA5-05.00,"WORK PREPARATION, EXCAVATION 20UHA - Formworks for side of blinding",5121,"HK1003-Rev.0E-3",TT_Task,"55902",-,-,-,100,TK_Complete,09/08/2021,09/08/2021,13/08/2021,14/08/2021,"SI20UHA5-05.0 FS","SI20UHA5-05.0","SI20UHA5-05.1 FS","SI20UHA5-05.1",53,53,53,54,12,12,12,12,25,,"HK1003 -Blackpoint D2 - Rev.0E DD30092021"
1-5808,SI20UHA5-05.0,"WORK PREPARATION, EXCAVATION 20UHA - Excavation to correction setting-out level",5121,"HK1003-Rev.0E-3",TT_Task,"55902",-,-,-,100,TK_Complete,02/08/2021,02/08/2021,11/08/2021,12/08/2021,"","","SI20UHA5-05.00 FS","SI20UHA5-05.00",52,52,53,53,12,12,12,12,24,,"HK1003 -Blackpoint D2 - Rev.0E DD30092021"
1-5809,SI20UHA5-05.1,"WORK PREPARATION, EXCAVATION 20UHA - Blinding",5121,"HK1003-Rev.0E-3",TT_Task,"55902",-,-,-,100,TK_Complete,09/08/2021,09/08/2021,24/09/2021,24/09/2021,"SI20UHA5-05.00 FS","SI20UHA5-05.00","SI20UHA5-05 FF","SI20UHA5-05",53,53,59,59,12,12,13,13,25,,"HK1003 -Blackpoint D2 - Rev.0E DD30092021"
1-5810,SI20UHA5-15.01,"CONSTRUCTION FOUNDATION 20UHA - Formwork for base slab part1- left side -15m",5121,"HK1003-Rev.0E-3",TT_Task,"55902",-,-,-,100,TK_Complete,09/10/2021,22/09/2021,23/10/2021,27/09/2021,"SI20UHA5-15.00 SS","SI20UHA5-15.00","SI20UHA5-15.02 FS","SI20UHA5-15.02",62,59,64,60,14,13,14,14,32,,"HK1003 -Blackpoint D2 - Rev.0E DD30092021"
1-5811,SI20UHA5-15.02,"CONSTRUCTION FOUNDATION 20UHA - Anchor bolt installation base slab part1",5121,"HK1003-Rev.0E-3",TT_Task,"55902",-,-,-,0,TK_NotStart,21/10/2021,,23/10/2021,,"SI20UHA5-15.01 FS,SI20UHA2B-14 FS,SI20UHA5-15.00 FS","SI20UHA5-15.01,SI20UHA2B-14,SI20UHA5-15.00","SI20UHA5-15.03 FS","SI20UHA5-15.03",63,,64,,14,,14,,35,104,"HK1003 -Blackpoint D2 - Rev.0E DD30092021"
1-5812,SI20UHA5-15.03,"CONSTRUCTION FOUNDATION 20UHA - Concreting base slab part1",5121,"HK1003-Rev.0E-3",TT_Task,"55902",-,-,-,0,TK_NotStart,30/10/2021,,30/10/2021,,"SI20UHA5-15.02 FS,SI--UHA2-86 FS,SI20UHA2-75 FS","SI20UHA5-15.02,SI--UHA2-86,SI20UHA2-75","SI20UHA5-15.04 FS","SI20UHA5-15.04",65,,65,,15,,15,,36,56,"HK1003 -Blackpoint D2 - Rev.0E DD30092021"
1-5813,SI20UHA5-15.04,"CONSTRUCTION FOUNDATION 20UHA - Rebar fixing and grounding installation for base slab part2- right side -31m",5121,"HK1003-Rev.0E-3",TT_Task,"55902",-,-,-,0,TK_NotStart,21/10/2021,,13/11/2021,,"SI20UHA5-15.03 FS","SI20UHA5-15.03","SI20UHA5-15.05 SS","SI20UHA5-15.05",63,,67,,14,,15,,35,56,"HK1003 -Blackpoint D2 - Rev.0E DD30092021"
1-5814,SI20UHA5-15.05,"CONSTRUCTION FOUNDATION 20UHA - Formwork for base slab part2- right side -31m",5121,"HK1003-Rev.0E-3",TT_Task,"55902",-,-,-,0,TK_NotStart,24/10/2021,,12/11/2021,,"SI20UHA5-15.04 SS","SI20UHA5-15.04","SI20UHA5-15.06 FS","SI20UHA5-15.06",64,,66,,14,,15,,36,56,"HK1003 -Blackpoint D2 - Rev.0E DD30092021"
1-5815,SI20UHA5-15.06,"CONSTRUCTION FOUNDATION 20UHA - Anchor bolt installation base slab part2",5121,"HK1003-Rev.0E-3",TT_Task,"55902",-,-,-,0,TK_NotStart,13/11/2021,,19/11/2021,,"SI20UHA5-15.05 FS","SI20UHA5-15.05","SI20UHA5-15.07 FS","SI20UHA5-15.07",67,,67,,15,,15,,38,56,"HK1003 -Blackpoint D2 - Rev.0E DD30092021"
1-5816,SI20UHA5-15.07,"CONSTRUCTION FOUNDATION 20UHA - Concreting base slab part2",5121,"HK1003-Rev.0E-3",TT_Task,"55902",-,-,-,0,TK_NotStart,20/11/2021,,20/11/2021,,"SI20UHA5-15.06 FS","SI20UHA5-15.06","SI20UHA5-15.09 FS","SI20UHA5-15.09",68,,68,,15,,15,,39,56,"HK1003 -Blackpoint D2 - Rev.0E DD30092021"
1-5817,SI20UHA5-15.08,"CONSTRUCTION FOUNDATION 20UHA - Rebar fixing and grounding installation for base slab part3- mid part  -12m",5121,"HK1003-Rev.0E-3",TT_Task,"55902",-,-,-,0,TK_NotStart,28/11/2021,,07/12/2021,,"SI20UHA5-15.09 FS","SI20UHA5-15.09","SI20UHA5-15.11 FS","SI20UHA5-15.11",69,,70,,16,,16,,40,56,"HK1003 -Blackpoint D2 - Rev.0E DD30092021"
1-5818,SI20UHA5-15.09,"CONSTRUCTION FOUNDATION 20UHA - Desmantling of formworks part2",5121,"HK1003-Rev.0E-3",TT_Task,"55902",-,-,-,0,TK_NotStart,21/11/2021,,27/11/2021,,"SI20UHA5-15.07 FS","SI20UHA5-15.07","SI20UHA5-15.08 FS,SI20UHA5-15.11 SS","SI20UHA5-15.08,SI20UHA5-15.11",68,,69,,15,,16,,39,56,"HK1003 -Blackpoint D2 - Rev.0E DD30092021"
1-5819,SI20UHA5-15.11,"CONSTRUCTION FOUNDATION 20UHA - Concreting base slab part3 Includ. MBR pedestal",5121,"HK1003-Rev.0E-3",TT_Task,"55902",-,-,-,0,TK_NotStart,08/12/2021,,08/12/2021,,"SI20UHA5-15.08 FS,SI20UHA5-15.09 SS","SI20UHA5-15.08,SI20UHA5-15.09","SI20UHA5-15.12 FS","SI20UHA5-15.12",70,,70,,16,,16,,41,56,"HK1003 -Blackpoint D2 - Rev.0E DD30092021"
1-5820,SI20UHA5-15.12,"CONSTRUCTION FOUNDATION 20UHA - Formwork removal and cleanup",5121,"HK1003-Rev.0E-3",TT_Task,"55902",-,-,-,0,TK_NotStart,09/12/2021,,14/12/2021,,"SI20UHA5-15.11 FS","SI20UHA5-15.11","SI20UHA5-45 FS,SI20UHA5-15 FF","SI20UHA5-45,SI20UHA5-15",70,,71,,16,,16,,42,56,"HK1003 -Blackpoint D2 - Rev.0E DD30092021"
1-5821,SI20UBF5-05.00,"WORK PREPARATION / EXCAVATION / PILE TRIMMING / PLATE WELDING 20UBE/UBF - Preparation and excavation",5121,"HK1003-Rev.0E-3",TT_Task,"55902",-,-,-,0,TK_NotStart,14/10/2021,,25/10/2021,,"SI--UBF2A75 FS","SI--UBF2A75","SI20UBF5-05.01 FS","SI20UBF5-05.01",62,,64,,14,,15,,34,144,"HK1003 -Blackpoint D2 - Rev.0E DD30092021"
1-5822,SI20UBF5-05.01,"WORK PREPARATION / EXCAVATION / PILE TRIMMING / PLATE WELDING 20UBE/UBF - Blinding",5121,"HK1003-Rev.0E-3",TT_Task,"55902",-,-,-,0,TK_NotStart,26/10/2021,,27/10/2021,,"SI20UBF5-05.00 FS","SI20UBF5-05.00","SI20UBF5-05.02 FS","SI20UBF5-05.02",64,,64,,15,,15,,36,144,"HK1003 -Blackpoint D2 - Rev.0E DD30092021"
1-5823,SI20UBF5-05.02,"WORK PREPARATION / EXCAVATION / PILE TRIMMING / PLATE WELDING 20UBE/UBF - Pile trimming",5121,"HK1003-Rev.0E-3",TT_Task,"55902",-,-,-,0,TK_NotStart,28/10/2021,,06/11/2021,,"SI20UBF5-05.01 FS","SI20UBF5-05.01","SI20UBF5-05 FF,SI20UBF5-19 FS","SI20UBF5-05,SI20UBF5-19",64,,66,,15,,15,,36,144,"HK1003 -Blackpoint D2 - Rev.0E DD30092021"
1-5824,SI20HA-4G41,"(OTD-OS) ON SITE HEATING SURFACES HRSG20 MODULE5",5121,"HK1003-Rev.0E-3",TT_FinMile,"55902",-,-,-,0,TK_NotStart,28/03/2022,,28/03/2022,,"SI20HA-4G46 FS","SI20HA-4G46","SI20HA-6C22 FS","SI20HA-6C22",86,,86,,20,,20,,54,24,"HK1003 -Blackpoint D2 - Rev.0E DD30092021"
1-5825,SI20HA-4G42,"(OTD-OS) ON SITE HEATING SURFACES HRSG20 MODULE4",5121,"HK1003-Rev.0E-3",TT_FinMile,"55902",-,-,-,0,TK_NotStart,31/03/2022,,31/03/2022,,"SI20HA-4G47 FS","SI20HA-4G47","SI20HA-6C22 FS","SI20HA-6C22",86,,86,,20,,20,,54,0,"HK1003 -Blackpoint D2 - Rev.0E DD30092021"
1-5826,SI20HA-4G43,"(OTD-OS) ON SITE HEATING SURFACES HRSG20 MODULE3",5121,"HK1003-Rev.0E-3",TT_FinMile,"55902",-,-,-,0,TK_NotStart,04/04/2022,,04/04/2022,,"SI20HA-4G48 FS","SI20HA-4G48","SI20HA-6C22 FF","SI20HA-6C22",87,,87,,20,,20,,56,192,"HK1003 -Blackpoint D2 - Rev.0E DD30092021"
1-5827,SI20HA-4G44,"(OTD-OS) ON SITE HEATING SURFACES HRSG20 MODULE2",5121,"HK1003-Rev.0E-3",TT_FinMile,"55902",-,-,-,0,TK_NotStart,06/04/2022,,06/04/2022,,"SI20HA-4G49 FS","SI20HA-4G49","SI20HA-6C22 FF","SI20HA-6C22",87,,87,,20,,20,,56,176,"HK1003 -Blackpoint D2 - Rev.0E DD30092021"
1-5828,SI20HA-4G45,"(OTD-OS) ON SITE HEATING SURFACES HRSG20 MODULE1",5121,"HK1003-Rev.0E-3",TT_FinMile,"55902",-,-,-,0,TK_NotStart,02/04/2022,,02/04/2022,,"SI20HA-4G50 FS","SI20HA-4G50","SI20HA-6C22 FF","SI20HA-6C22",87,,87,,20,,20,,55,208,"HK1003 -Blackpoint D2 - Rev.0E DD30092021"
1-5829,SI20HA-4G46,"TRANSPORT HEATING SURFACES HRSG20 MODULE5",5121,"HK1003-Rev.0E-3",TT_Task,"55902",-,-,-,0,TK_NotStart,19/03/2022,,28/03/2022,,"SI20HA-3G80 FS","SI20HA-3G80","SI20HA-4G41 FS","SI20HA-4G41",85,,86,,19,,20,,53,24,"HK1003 -Blackpoint D2 - Rev.0E DD30092021"
1-5830,SI20HA-4G47,"TRANSPORT HEATING SURFACES HRSG20 MODULE4",5121,"HK1003-Rev.0E-3",TT_Task,"55902",-,-,-,0,TK_NotStart,22/03/2022,,31/03/2022,,"SI20HA-3G80 FS","SI20HA-3G80","SI20HA-4G42 FS","SI20HA-4G42",85,,86,,19,,20,,53,0,"HK1003 -Blackpoint D2 - Rev.0E DD30092021"
1-5831,SI20HA-4G48,"TRANSPORT HEATING SURFACES HRSG20 MODULE3",5121,"HK1003-Rev.0E-3",TT_Task,"55902",-,-,-,0,TK_NotStart,26/03/2022,,04/04/2022,,"SI20HA-3G80 FS","SI20HA-3G80","SI20HA-4G43 FS","SI20HA-4G43",86,,87,,20,,20,,54,192,"HK1003 -Blackpoint D2 - Rev.0E DD30092021"
1-5832,SI20HA-4G49,"TRANSPORT HEATING SURFACES HRSG20 MODULE2",5121,"HK1003-Rev.0E-3",TT_Task,"55902",-,-,-,0,TK_NotStart,28/03/2022,,06/04/2022,,"SI20HA-3G80 FS","SI20HA-3G80","SI20HA-4G44 FS","SI20HA-4G44",86,,87,,20,,20,,54,176,"HK1003 -Blackpoint D2 - Rev.0E DD30092021"
1-5833,SI20HA-4G50,"TRANSPORT HEATING SURFACES HRSG20 MODULE1",5121,"HK1003-Rev.0E-3",TT_Task,"55902",-,-,-,0,TK_NotStart,24/03/2022,,02/04/2022,,"SI20HA-3G80 FS","SI20HA-3G80","SI20HA-4G45 FS,SI20HA-6-26 FS","SI20HA-4G45,SI20HA-6-26",85,,87,,20,,20,,53,208,"HK1003 -Blackpoint D2 - Rev.0E DD30092021"
1-5834,SI--URA2-104,"BD - RESUBMISSION APPROVAL SUBSTRUCTURE-20URA/URD",5121,"HK1003-Rev.0E-3",TT_Task,"55902",-,-,-,38,TK_Active,07/09/2021,07/09/2021,05/11/2021,,"SI--URA2-106 FS","SI--URA2-106","SI--URA2-107 FS","SI--URA2-107",57,57,65,,13,13,15,,29,304,"HK1003 -Blackpoint D2 - Rev.0E DD30092021"
1-5835,SI--URA2-105,"BD - SUBMISSION APPROVAL SUBSTRUCTURE-20URA/URD - WITHDRAWN",5121,"HK1003-Rev.0E-3",TT_Mile,"55902",-,-,-,100,TK_Complete,30/08/2021,30/08/2021,30/08/2021,30/08/2021,"SI--URA2-85 FS","SI--URA2-85","SI--URA2-106 FS","SI--URA2-106",56,56,56,56,13,13,13,13,27,,"HK1003 -Blackpoint D2 - Rev.0E DD30092021"
1-5836,SI--UHA2-83,"BD - SUBMISSION & APPROVAL - DETAIL DESIGN CONCRETE - 20UHA-WITHDRAWN",5121,"HK1003-Rev.0E-3",TT_Mile,"55902",-,-,-,100,TK_Complete,30/08/2021,30/08/2021,30/08/2021,30/08/2021,"SI--UHA2-79 FS","SI--UHA2-79","SI--UHA2-84 FS","SI--UHA2-84",56,56,56,56,13,13,13,13,27,,"HK1003 -Blackpoint D2 - Rev.0E DD30092021"
1-5837,SI--UHA2-84,"BD - IMPLEMENTATION OF COMMENTS 20UHA",5121,"HK1003-Rev.0E-3",TT_Task,"55902",-,-,-,100,TK_Complete,30/08/2021,30/08/2021,05/09/2021,05/09/2021,"SI--UHA2-83 FS","SI--UHA2-83","SI--UHA2-85 FS","SI--UHA2-85",56,56,57,57,13,13,13,13,27,,"HK1003 -Blackpoint D2 - Rev.0E DD30092021"
1-5838,SI-UZA2-96.04,"SUBBASE RING ROAD INCL. (U/G) DRAINAGE SYSTEM - PART 1A -  drainage",5121,"HK1003-Rev.0E-3",TT_Task,"55902",-,-,-,0,TK_NotStart,30/10/2021,,17/12/2021,,"SI-UZA2-96.02 SS","SI-UZA2-96.02","SI-UZA2-96 FF,SI-UZA2-99.00 FS","SI-UZA2-96,SI-UZA2-99.00",65,,71,,15,,16,,36,872,"HK1003 -Blackpoint D2 - Rev.0E DD30092021"
1-5839,SI20UMC5Y46.03,"CONSTRUCTION CEP PIT - Base Slab S1(Lvl +1.80m)-Rebar Fixing&Grounding Installation",5121,"HK1003-Rev.0E-3",TT_Task,"55902",-,-,-,100,TK_Complete,14/08/2021,14/08/2021,19/08/2021,20/08/2021,"SI20UMC5Y46.02 FS","SI20UMC5Y46.02","SI20UMC5Y46.04 SS","SI20UMC5Y46.04",54,54,54,54,12,12,12,12,26,,"HK1003 -Blackpoint D2 - Rev.0E DD30092021"
1-5840,SI20UMC5Y46.04,"CONSTRUCTION CEP PIT - Base Slab S1(Lvl +1.80m)-Formwork Erection&Installation of cast-in elements",5121,"HK1003-Rev.0E-3",TT_Task,"55902",-,-,-,100,TK_Complete,14/08/2021,14/08/2021,19/08/2021,20/08/2021,"SI20UMC5Y46.03 SS","SI20UMC5Y46.03","SI20UMC5Y46.05 FS","SI20UMC5Y46.05",54,54,54,54,12,12,12,12,26,,"HK1003 -Blackpoint D2 - Rev.0E DD30092021"
1-5841,SI20UMC5Y46.05,"CONSTRUCTION CEP PIT - Base Slab S1(Lvl +1.80m)-Concrete Pour",5121,"HK1003-Rev.0E-3",TT_Task,"55902",-,-,-,100,TK_Complete,20/08/2021,20/08/2021,20/08/2021,20/08/2021,"SI20UMC5Y46.04 FS","SI20UMC5Y46.04","SI20UMC5Y46.06 FS","SI20UMC5Y46.06",54,54,54,54,12,12,12,12,26,,"HK1003 -Blackpoint D2 - Rev.0E DD30092021"
1-5842,SI20UMC5Y46.06,"CONSTRUCTION CEP PIT - Base Slab S1(Lvl +1.80m)- Dismantling wailing&struts",5121,"HK1003-Rev.0E-3",TT_Task,"55902",-,-,-,100,TK_Complete,21/08/2021,21/08/2021,21/08/2021,23/08/2021,"SI20UMC5Y46.05 FS","SI20UMC5Y46.05","SI20UMC5Y46.07 FS","SI20UMC5Y46.07",55,55,55,55,12,12,12,12,27,,"HK1003 -Blackpoint D2 - Rev.0E DD30092021"
1-5843,SI20UMC5Y46.07,"CONSTRUCTION CEP PIT - Base Slab S2(Lvl +2.40m)-Damp Proofing",5121,"HK1003-Rev.0E-3",TT_Task,"55902",-,-,-,100,TK_Complete,10/08/2021,10/08/2021,11/08/2021,12/08/2021,"SI20UMC5Y46.06 FS","SI20UMC5Y46.06","SI20UMC5Y46.08 FS","SI20UMC5Y46.08",53,53,53,53,12,12,12,12,25,,"HK1003 -Blackpoint D2 - Rev.0E DD30092021"
1-5844,SI20UMC5Y46.08,"CONSTRUCTION CEP PIT - Base Slab S2(Lvl +2.40m)-Rebar Fixing&Grounding Installattion",5121,"HK1003-Rev.0E-3",TT_Task,"55902",-,-,-,100,TK_Complete,12/08/2021,12/08/2021,28/08/2021,30/08/2021,"SI20UMC5Y46.07 FS","SI20UMC5Y46.07","SI20UMC5Y46.09 FS","SI20UMC5Y46.09",53,53,56,56,12,12,13,13,25,,"HK1003 -Blackpoint D2 - Rev.0E DD30092021"
1-5845,SI20UMC5Y46.09,"CONSTRUCTION CEP PIT - Base Slab S2(Lvl +2.40m)-Formwork Erection&Installation of Cast-in Elements",5121,"HK1003-Rev.0E-3",TT_Task,"55902",-,-,-,100,TK_Complete,19/08/2021,19/08/2021,30/08/2021,30/08/2021,"SI20UMC5Y46.08 FS","SI20UMC5Y46.08","SI20UMC5Y46.10 FS","SI20UMC5Y46.10",54,54,56,56,12,12,13,13,26,,"HK1003 -Blackpoint D2 - Rev.0E DD30092021"
1-5846,SI20UMC5Y46.10,"CONSTRUCTION CEP PIT - Base Slab S2(Lvl +2.40m)-Concrete Pour",5121,"HK1003-Rev.0E-3",TT_Task,"55902",-,-,-,100,TK_Complete,01/09/2021,01/09/2021,01/09/2021,01/09/2021,"SI20UMC5Y46.09 FS","SI20UMC5Y46.09","SI20UMC5Y46.11 FS","SI20UMC5Y46.11",56,56,56,56,13,13,13,13,28,,"HK1003 -Blackpoint D2 - Rev.0E DD30092021"
1-5847,SI20UMC5Y46.11,"CONSTRUCTION CEP PIT - Base Slab S2(Lvl +2.40m)-Curing",5121,"HK1003-Rev.0E-3",TT_Task,"55902",-,-,-,100,TK_Complete,02/09/2021,02/09/2021,03/09/2021,03/09/2021,"SI20UMC5Y46.10 FS","SI20UMC5Y46.10","SI20UMC5Y46.12 FS","SI20UMC5Y46.12",56,56,56,56,13,13,13,13,28,,"HK1003 -Blackpoint D2 - Rev.0E DD30092021"
1-5848,SI20UMC5Y46.12,"CONSTRUCTION CEP PIT - Base Slab S2(Lvl +2.40m)-Dismantle Formworks",5121,"HK1003-Rev.0E-3",TT_Task,"55902",-,-,-,100,TK_Complete,04/09/2021,04/09/2021,07/09/2021,07/09/2021,"SI20UMC5Y46.11 FS","SI20UMC5Y46.11","SI20UMC5Y46.13 FS","SI20UMC5Y46.13",57,57,57,57,13,13,13,13,28,,"HK1003 -Blackpoint D2 - Rev.0E DD30092021"
1-5849,SI20UMC5Y46.13,"CONSTRUCTION CEP PIT - Screen Wall 05&07-Scaffold Erection",5121,"HK1003-Rev.0E-3",TT_Task,"55902",-,-,-,100,TK_Complete,30/09/2021,16/09/2021,04/10/2021,23/09/2021,"SI20UMC5Y46.12 FS","SI20UMC5Y46.12","SI20UMC5Y46.14 FS","SI20UMC5Y46.14",60,58,61,59,14,13,14,13,30,,"HK1003 -Blackpoint D2 - Rev.0E DD30092021"
1-5850,SI20UMC5Y46.14,"CONSTRUCTION CEP PIT - Screen Wall 05&07-Vertical Blinding (Lvl +5.475m)-Formwork Erection",5121,"HK1003-Rev.0E-3",TT_Task,"55902",-,-,-,0,TK_NotStart,30/09/2021,,30/09/2021,,"SI20UMC5Y46.13 FS","SI20UMC5Y46.13","SI20UMC5Y46.15 FS","SI20UMC5Y46.15",60,,60,,14,,14,,30,272,"HK1003 -Blackpoint D2 - Rev.0E DD30092021"
1-5851,SI20UMC5Y46.15,"CONSTRUCTION CEP PIT - Screen Wall 05&07-Vertical Blinding (Lvl +5.475m)-Concrete Pour",5121,"HK1003-Rev.0E-3",TT_Task,"55902",-,-,-,0,TK_NotStart,02/10/2021,,02/10/2021,,"SI20UMC5Y46.14 FS","SI20UMC5Y46.14","SI20UMC5Y46.16 FS","SI20UMC5Y46.16",61,,61,,14,,14,,31,272,"HK1003 -Blackpoint D2 - Rev.0E DD30092021"
1-5852,SI20UMC5Y46.16,"CONSTRUCTION CEP PIT - Screen Wall 05&07-Vertical Blinding (Lvl +5.475m)-Dismantling Formworks",5121,"HK1003-Rev.0E-3",TT_Task,"55902",-,-,-,0,TK_NotStart,04/10/2021,,04/10/2021,,"SI20UMC5Y46.15 FS","SI20UMC5Y46.15","SI20UMC5Y46.17 FS","SI20UMC5Y46.17",61,,61,,14,,14,,31,272,"HK1003 -Blackpoint D2 - Rev.0E DD30092021"
1-5853,SI20UMC5Y46.17,"CONSTRUCTION CEP PIT - Screen Wall 05&07-Vertical Blinding (Lvl +5.475m)-Damp Proofing",5121,"HK1003-Rev.0E-3",TT_Task,"55902",-,-,-,0,TK_NotStart,05/10/2021,,06/10/2021,,"SI20UMC5Y46.16 FS","SI20UMC5Y46.16","SI20UMC5Y46.18 FS","SI20UMC5Y46.18",61,,61,,14,,14,,31,272,"HK1003 -Blackpoint D2 - Rev.0E DD30092021"
1-5854,SI20UMC5Y46.18,"CONSTRUCTION CEP PIT - Screen Wall 02&05&06&07-Rebar Fixing",5121,"HK1003-Rev.0E-3",TT_Task,"55902",-,-,-,0,TK_NotStart,07/10/2021,,23/10/2021,,"SI20UMC5Y46.17 FS","SI20UMC5Y46.17","SI20UMC5Y46.19 FS","SI20UMC5Y46.19",61,,64,,14,,14,,32,272,"HK1003 -Blackpoint D2 - Rev.0E DD30092021"
1-5855,SI20UMC5Y46.19,"CONSTRUCTION CEP PIT - Screen Wall 02&05&06&07-Formwork Erection",5121,"HK1003-Rev.0E-3",TT_Task,"55902",-,-,-,0,TK_NotStart,25/10/2021,,30/10/2021,,"SI20UMC5Y46.18 FS","SI20UMC5Y46.18","SI20UMC5Y46.20 FS","SI20UMC5Y46.20",64,,65,,15,,15,,36,272,"HK1003 -Blackpoint D2 - Rev.0E DD30092021"
1-5856,SI20UMC5Y46.20,"CONSTRUCTION CEP PIT - Screen Wall 02&05&06&07-Concrete Pour",5121,"HK1003-Rev.0E-3",TT_Task,"55902",-,-,-,0,TK_NotStart,01/11/2021,,01/11/2021,,"SI20UMC5Y46.19 FS","SI20UMC5Y46.19","SI20UMC5Y46.21 FS","SI20UMC5Y46.21",65,,65,,15,,15,,36,272,"HK1003 -Blackpoint D2 - Rev.0E DD30092021"
1-5857,SI20UMC5Y46.21,"CONSTRUCTION CEP PIT - Screen Wall 02&05&06&07-Curing",5121,"HK1003-Rev.0E-3",TT_Task,"55902",-,-,-,0,TK_NotStart,02/11/2021,,09/11/2021,,"SI20UMC5Y46.20 FS","SI20UMC5Y46.20","SI20UMC5Y46.22 FS","SI20UMC5Y46.22",65,,66,,15,,15,,37,272,"HK1003 -Blackpoint D2 - Rev.0E DD30092021"
1-5858,SI20UMC5Y46.22,"CONSTRUCTION CEP PIT - Screen Wall 02&05&06&07-Dismantle Formworks",5121,"HK1003-Rev.0E-3",TT_Task,"55902",-,-,-,0,TK_NotStart,10/11/2021,,10/11/2021,,"SI20UMC5Y46.21 FS","SI20UMC5Y46.21","SI20UMC5Y46.23 FS","SI20UMC5Y46.23",66,,66,,15,,15,,38,272,"HK1003 -Blackpoint D2 - Rev.0E DD30092021"
1-5859,SI20UMC5Y46.23,"CONSTRUCTION CEP PIT - Top Slab(Lvl +5.15m)-Excavation&Compaction",5121,"HK1003-Rev.0E-3",TT_Task,"55902",-,-,-,0,TK_NotStart,11/11/2021,,11/11/2021,,"SI20UMC5Y46.22 FS","SI20UMC5Y46.22","SI20UMC5Y46.24 FS","SI20UMC5Y46.24",66,,66,,15,,15,,38,272,"HK1003 -Blackpoint D2 - Rev.0E DD30092021"
1-5860,SI20UMC5Y46.24,"CONSTRUCTION CEP PIT - Screen Wall 05-Sheet Pile Cutting",5121,"HK1003-Rev.0E-3",TT_Task,"55902",-,-,-,0,TK_NotStart,12/11/2021,,12/11/2021,,"SI20UMC5Y46.23 FS","SI20UMC5Y46.23","SI20UMC5Y46.25 FS","SI20UMC5Y46.25",66,,66,,15,,15,,38,272,"HK1003 -Blackpoint D2 - Rev.0E DD30092021"
1-5861,SI20UMC5Y46.25,"CONSTRUCTION CEP PIT - Top Slab(Lvl +5.15m)-Blinding",5121,"HK1003-Rev.0E-3",TT_Task,"55902",-,-,-,0,TK_NotStart,13/11/2021,,13/11/2021,,"SI20UMC5Y46.24 FS","SI20UMC5Y46.24","SI20UMC5Y46.26 FS","SI20UMC5Y46.26",67,,67,,15,,15,,38,272,"HK1003 -Blackpoint D2 - Rev.0E DD30092021"
1-5862,SI20UMC5Y46.26,"CONSTRUCTION CEP PIT - Top Slab(Lvl +5.15m)-Damp Proofing",5121,"HK1003-Rev.0E-3",TT_Task,"55902",-,-,-,0,TK_NotStart,15/11/2021,,15/11/2021,,"SI20UMC5Y46.25 FS","SI20UMC5Y46.25","SI20UMC5Y46.27 FS","SI20UMC5Y46.27",67,,67,,15,,15,,38,272,"HK1003 -Blackpoint D2 - Rev.0E DD30092021"
1-5863,SI20UMC5Y46.27,"CONSTRUCTION CEP PIT - Top Slab(Lvl +5.15m)-Formwork Erection",5121,"HK1003-Rev.0E-3",TT_Task,"55902",-,-,-,0,TK_NotStart,16/11/2021,,16/11/2021,,"SI20UMC5Y46.26 FS","SI20UMC5Y46.26","SI20UMC5Y46.28 FS","SI20UMC5Y46.28",67,,67,,15,,15,,38,272,"HK1003 -Blackpoint D2 - Rev.0E DD30092021"
1-5864,SI20UMC5Y46.28,"CONSTRUCTION CEP PIT - Top Slab(Lvl +5.15m)-Rebarfixing",5121,"HK1003-Rev.0E-3",TT_Task,"55902",-,-,-,0,TK_NotStart,17/11/2021,,17/11/2021,,"SI20UMC5Y46.27 FS","SI20UMC5Y46.27","SI20UMC5Y46.29 FS","SI20UMC5Y46.29",67,,67,,15,,15,,38,272,"HK1003 -Blackpoint D2 - Rev.0E DD30092021"
1-5865,SI20UMC5Y46.29,"CONSTRUCTION CEP PIT - Top Slab(Lvl +5.15m)-Cocnrete Pour",5121,"HK1003-Rev.0E-3",TT_Task,"55902",-,-,-,0,TK_NotStart,18/11/2021,,18/11/2021,,"SI20UMC5Y46.28 FS","SI20UMC5Y46.28","SI20UMC5Y46.30 FS","SI20UMC5Y46.30",67,,67,,15,,15,,39,272,"HK1003 -Blackpoint D2 - Rev.0E DD30092021"
1-5866,SI20UMC5Y46.30,"CONSTRUCTION CEP PIT - Screen Wall 03-Rebar Fixing",5121,"HK1003-Rev.0E-3",TT_Task,"55902",-,-,-,0,TK_NotStart,19/11/2021,,19/11/2021,,"SI20UMC5Y46.29 FS","SI20UMC5Y46.29","SI20UMC5Y46.31 FS","SI20UMC5Y46.31",67,,67,,15,,15,,39,272,"HK1003 -Blackpoint D2 - Rev.0E DD30092021"
1-5867,SI20UMC5Y46.31,"CONSTRUCTION CEP PIT - Screen Wall 03-Formwork",5121,"HK1003-Rev.0E-3",TT_Task,"55902",-,-,-,0,TK_NotStart,20/11/2021,,20/11/2021,,"SI20UMC5Y46.30 FS","SI20UMC5Y46.30","SI20UMC5Y46.32 FS","SI20UMC5Y46.32",68,,68,,15,,15,,39,272,"HK1003 -Blackpoint D2 - Rev.0E DD30092021"
1-5868,SI20UMC5Y46.32,"CONSTRUCTION CEP PIT - Screen Wall 03-Concrete Pour",5121,"HK1003-Rev.0E-3",TT_Task,"55902",-,-,-,0,TK_NotStart,22/11/2021,,22/11/2021,,"SI20UMC5Y46.31 FS","SI20UMC5Y46.31","SI20UMC5Y46.33 FS","SI20UMC5Y46.33",68,,68,,15,,15,,39,272,"HK1003 -Blackpoint D2 - Rev.0E DD30092021"
1-5869,SI20UMC5Y46.33,"CONSTRUCTION CEP PIT - Screen Wall 03-Curing",5121,"HK1003-Rev.0E-3",TT_Task,"55902",-,-,-,0,TK_NotStart,23/11/2021,,25/11/2021,,"SI20UMC5Y46.32 FS","SI20UMC5Y46.32","SI20UMC5Y46.34 FS","SI20UMC5Y46.34",68,,68,,15,,16,,39,272,"HK1003 -Blackpoint D2 - Rev.0E DD30092021"
1-5870,SI20UMC5Y46.34,"CONSTRUCTION CEP PIT - Screen Wall 03-Dismantling Formworks",5121,"HK1003-Rev.0E-3",TT_Task,"55902",-,-,-,0,TK_NotStart,26/11/2021,,26/11/2021,,"SI20UMC5Y46.33 FS","SI20UMC5Y46.33","SI20UMC5Y46.35 FS","SI20UMC5Y46.35",68,,68,,16,,16,,39,272,"HK1003 -Blackpoint D2 - Rev.0E DD30092021"
1-5871,SI20UMC5Y46.35,"CONSTRUCTION CEP PIT - Screen Wall 03-Damp Proofing",5121,"HK1003-Rev.0E-3",TT_Task,"55902",-,-,-,0,TK_NotStart,27/11/2021,,27/11/2021,,"SI20UMC5Y46.34 FS","SI20UMC5Y46.34","SI20UMC5Y46.36 FS","SI20UMC5Y46.36",69,,69,,16,,16,,39,272,"HK1003 -Blackpoint D2 - Rev.0E DD30092021"
1-5872,SI20UMC5Y46.36,"CONSTRUCTION CEP PIT - Screen Wall 03-Backfilling",5121,"HK1003-Rev.0E-3",TT_Task,"55902",-,-,-,0,TK_NotStart,29/11/2021,,29/11/2021,,"SI20UMC5Y46.35 FS","SI20UMC5Y46.35","SI20UMC5Y46.37 FS","SI20UMC5Y46.37",69,,69,,16,,16,,40,272,"HK1003 -Blackpoint D2 - Rev.0E DD30092021"
1-5873,SI20UMC5Y46.37,"(RFE) CONSTRUCTION CEP PIT",5121,"HK1003-Rev.0E-3",TT_Task,"55902",-,-,-,0,TK_NotStart,30/11/2021,,30/11/2021,,"SI20UMC5Y46.36 FS","SI20UMC5Y46.36","SI20UMC5Y46 FF,SI20UMC5Y45 FS","SI20UMC5Y46,SI20UMC5Y45",69,,69,,16,,16,,40,272,"HK1003 -Blackpoint D2 - Rev.0E DD30092021"
1-5874,SI20UMC5Y47.07,"CONSTRUCTION LDK PIT - Excavation around pit +350mPD",5121,"HK1003-Rev.0E-3",TT_Task,"55902",-,-,-,100,TK_Complete,21/08/2021,21/08/2021,27/08/2021,28/08/2021,"SI20UMC5Y47.06 FS","SI20UMC5Y47.06","SI20UMC5Y47.08 FS","SI20UMC5Y47.08",55,55,55,56,12,12,13,13,27,,"HK1003 -Blackpoint D2 - Rev.0E DD30092021"
1-5875,SI20UMC5Y47.08,"CONSTRUCTION LDK PIT - Sheet Pile Cutting",5121,"HK1003-Rev.0E-3",TT_Task,"55902",-,-,-,300,TK_Active,23/09/2021,27/09/2021,23/09/2021,,"SI20UMC5Y47.07 FS","SI20UMC5Y47.07","SI20UMC5Y47.09 FS,SI20UMC5Y47.10 FS,SI20UMC5Y47.14 FF","SI20UMC5Y47.09,SI20UMC5Y47.10,SI20UMC5Y47.14",59,60,59,,13,14,13,,30,712,"HK1003 -Blackpoint D2 - Rev.0E DD30092021"
1-5876,SI20UMC5Y47.09,"CONSTRUCTION LDK PIT - Scaffold Erection(Lvl +2.65m)",5121,"HK1003-Rev.0E-3",TT_Task,"55902",-,-,-,100,TK_Complete,24/09/2021,23/09/2021,24/09/2021,24/09/2021,"SI20UMC5Y47.08 FS","SI20UMC5Y47.08","SI20UMC5Y47.10 FS","SI20UMC5Y47.10",59,59,59,59,13,13,13,13,30,,"HK1003 -Blackpoint D2 - Rev.0E DD30092021"
1-5877,SI20UMC5Y47.12,"CONSTRUCTION LDK PIT - Vertical Blinding (Lvl +2.65m)-Dismatle Works",5121,"HK1003-Rev.0E-3",TT_Task,"55902",-,-,-,0,TK_NotStart,07/10/2021,,07/10/2021,,"SI20UMC5Y47.11 FS","SI20UMC5Y47.11","SI20UMC5Y47.13 FS","SI20UMC5Y47.13",61,,61,,14,,14,,32,712,"HK1003 -Blackpoint D2 - Rev.0E DD30092021"
1-5878,SI20UMC5Y47.10,"CONSTRUCTION LDK PIT - Vertical Blinding (Lvl +2.65m)-Formwork Erection",5121,"HK1003-Rev.0E-3",TT_Task,"55902",-,-,-,0,TK_NotStart,04/10/2021,,05/10/2021,,"SI20UMC5Y47.09 FS,SI20UMC5Y47.08 FS","SI20UMC5Y47.09,SI20UMC5Y47.08","SI20UMC5Y47.11 FS","SI20UMC5Y47.11",61,,61,,14,,14,,31,712,"HK1003 -Blackpoint D2 - Rev.0E DD30092021"
1-5879,SI20UMC5Y47.11,"CONSTRUCTION LDK PIT - Vertical Blinding (Lvl +2.65m)-Concrete Pour",5121,"HK1003-Rev.0E-3",TT_Task,"55902",-,-,-,0,TK_NotStart,06/10/2021,,06/10/2021,,"SI20UMC5Y47.10 FS","SI20UMC5Y47.10","SI20UMC5Y47.12 FS","SI20UMC5Y47.12",61,,61,,14,,14,,32,712,"HK1003 -Blackpoint D2 - Rev.0E DD30092021"
1-5880,SI20UMC5Y47.13,"CONSTRUCTION LDK PIT - Screen Wall S1(Lvl +2.65m)-Damp Proofing",5121,"HK1003-Rev.0E-3",TT_Task,"55902",-,-,-,0,TK_NotStart,08/10/2021,,08/10/2021,,"SI20UMC5Y47.12 FS","SI20UMC5Y47.12","SI20UMC5Y47.14 SS,SI20UMC5Y47.15 FS","SI20UMC5Y47.14,SI20UMC5Y47.15",61,,61,,14,,14,,32,712,"HK1003 -Blackpoint D2 - Rev.0E DD30092021"
1-5881,SI20UMC5Y47.14,"CONSTRUCTION LDK PIT - Dismatle of Waling&Struts",5121,"HK1003-Rev.0E-3",TT_Task,"55902",-,-,-,100,TK_Active,09/10/2021,27/09/2021,11/10/2021,,"SI20UMC5Y47.13 SS,SI20UMC5Y47.08 FF","SI20UMC5Y47.13,SI20UMC5Y47.08","SI20UMC5Y47.15 FS","SI20UMC5Y47.15",62,60,62,,14,14,14,,32,752,"HK1003 -Blackpoint D2 - Rev.0E DD30092021"
1-5882,SI20UMC5Y47.15,"CONSTRUCTION LDK PIT - Screen Wall S1(Lvl +2.65m)-Rebar Fixing",5121,"HK1003-Rev.0E-3",TT_Task,"55902",-,-,-,0,TK_NotStart,09/10/2021,,20/10/2021,,"SI20UMC5Y47.14 FS,SI20UMC5Y47.13 FS","SI20UMC5Y47.14,SI20UMC5Y47.13","SI20UMC5Y47.16 FS,SI20UMC5Y47.16 FF","SI20UMC5Y47.16,SI20UMC5Y47.16",62,,63,,14,,14,,32,712,"HK1003 -Blackpoint D2 - Rev.0E DD30092021"
1-5883,SI20UMC5Y47.16,"CONSTRUCTION LDK PIT - Screen Wall S1(Lvl +2.65m)-Formworks Erection",5121,"HK1003-Rev.0E-3",TT_Task,"55902",-,-,-,0,TK_NotStart,21/10/2021,,27/10/2021,,"SI20UMC5Y47.15 FS,SI20UMC5Y47.15 FF","SI20UMC5Y47.15,SI20UMC5Y47.15","SI20UMC5Y47.17 FS","SI20UMC5Y47.17",63,,64,,14,,15,,35,712,"HK1003 -Blackpoint D2 - Rev.0E DD30092021"
1-5884,SI20UMC5Y47.17,"CONSTRUCTION LDK PIT - Screen Wall S1(Lvl +2.65m)-Cocnrete Pour",5121,"HK1003-Rev.0E-3",TT_Task,"55902",-,-,-,0,TK_NotStart,28/10/2021,,28/10/2021,,"SI20UMC5Y47.16 FS","SI20UMC5Y47.16","SI20UMC5Y47.18 FS","SI20UMC5Y47.18",64,,64,,15,,15,,36,712,"HK1003 -Blackpoint D2 - Rev.0E DD30092021"
1-5885,SI20UMC5Y47.18,"CONSTRUCTION LDK PIT - Screen Wall S1(Lvl +2.65m)-Curing",5121,"HK1003-Rev.0E-3",TT_Task,"55902",-,-,-,0,TK_NotStart,29/10/2021,,02/11/2021,,"SI20UMC5Y47.17 FS","SI20UMC5Y47.17","SI20UMC5Y47.19 FS","SI20UMC5Y47.19",64,,65,,15,,15,,36,712,"HK1003 -Blackpoint D2 - Rev.0E DD30092021"
1-5886,SI20UMC5Y47.19,"CONSTRUCTION LDK PIT - Screen Wall S2(Lvl +4.65m)-Rebar Fixing",5121,"HK1003-Rev.0E-3",TT_Task,"55902",-,-,-,0,TK_NotStart,03/11/2021,,16/11/2021,,"SI20UMC5Y47.18 FS","SI20UMC5Y47.18","SI20UMC5Y47.20 FS","SI20UMC5Y47.20",65,,67,,15,,15,,37,712,"HK1003 -Blackpoint D2 - Rev.0E DD30092021"
1-5887,SI20UMC5Y47.20,"CONSTRUCTION LDK PIT - Screen Wall S2(Lvl +4.65m)-Formwork",5121,"HK1003-Rev.0E-3",TT_Task,"55902",-,-,-,0,TK_NotStart,17/11/2021,,23/11/2021,,"SI20UMC5Y47.19 FS","SI20UMC5Y47.19","SI20UMC5Y47.21 FS","SI20UMC5Y47.21",67,,68,,15,,15,,38,712,"HK1003 -Blackpoint D2 - Rev.0E DD30092021"
1-5888,SI20UMC5Y47.21,"CONSTRUCTION LDK PIT - Screen Wall S2(Lvl +4.65m)-Concrete Pour",5121,"HK1003-Rev.0E-3",TT_Task,"55902",-,-,-,0,TK_NotStart,24/11/2021,,24/11/2021,,"SI20UMC5Y47.20 FS","SI20UMC5Y47.20","SI20UMC5Y47.22 FS","SI20UMC5Y47.22",68,,68,,16,,16,,39,712,"HK1003 -Blackpoint D2 - Rev.0E DD30092021"
1-5889,SI20UMC5Y47.22,"CONSTRUCTION LDK PIT - Screen Wall S2(Lvl +4.65m)-Curing",5121,"HK1003-Rev.0E-3",TT_Task,"55902",-,-,-,0,TK_NotStart,25/11/2021,,02/12/2021,,"SI20UMC5Y47.21 FS","SI20UMC5Y47.21","SI20UMC5Y47.23 FS","SI20UMC5Y47.23",68,,69,,16,,16,,39,712,"HK1003 -Blackpoint D2 - Rev.0E DD30092021"
1-5890,SI20UMC5Y47.23,"CONSTRUCTION LDK PIT - Screen Wall S2(Lvl +4.65m)-Dismatle Formwork",5121,"HK1003-Rev.0E-3",TT_Task,"55902",-,-,-,0,TK_NotStart,03/12/2021,,03/12/2021,,"SI20UMC5Y47.22 FS","SI20UMC5Y47.22","SI20UMC5Y47.24 FS","SI20UMC5Y47.24",69,,69,,16,,16,,40,712,"HK1003 -Blackpoint D2 - Rev.0E DD30092021"
1-5891,SI20UMC5Y47.24,"CONSTRUCTION LDK PIT - Screen Wall S2(Lvl +4.65m)-DampProofing",5121,"HK1003-Rev.0E-3",TT_Task,"55902",-,-,-,0,TK_NotStart,04/12/2021,,04/12/2021,,"SI20UMC5Y47.23 FS","SI20UMC5Y47.23","SI20UMC5Y47.25 FS","SI20UMC5Y47.25",70,,70,,16,,16,,40,712,"HK1003 -Blackpoint D2 - Rev.0E DD30092021"
1-5892,SI20UMC5Y47.25,"(RFE CONSTRUCTION LDK PIT",5121,"HK1003-Rev.0E-3",TT_Task,"55902",-,-,-,0,TK_NotStart,06/12/2021,,06/12/2021,,"SI20UMC5Y47.24 FS","SI20UMC5Y47.24","SI20UMC5Y47 FF,SI20UMC5Y48 FS","SI20UMC5Y47,SI20UMC5Y48",70,,70,,16,,16,,41,712,"HK1003 -Blackpoint D2 - Rev.0E DD30092021"
1-5893,SI20UMC5Y47.26,"CONSTRUCTION LDK TRENCH - LDK Trench Slab-Excavation",5121,"HK1003-Rev.0E-3",TT_Task,"55902",-,-,-,0,TK_NotStart,15/10/2021,,15/10/2021,,"","","SI20UMC5Y47.27 FS","SI20UMC5Y47.27",62,,62,,14,,14,,34,808,"HK1003 -Blackpoint D2 - Rev.0E DD30092021"
1-5894,SI20UMC5Y47.27,"CONSTRUCTION LDK TRENCH - LDK Trench Slab-Blinding",5121,"HK1003-Rev.0E-3",TT_Task,"55902",-,-,-,0,TK_NotStart,16/10/2021,,18/10/2021,,"SI20UMC5Y47.26 FS","SI20UMC5Y47.26","SI20UMC5Y47.28 FS","SI20UMC5Y47.28",63,,63,,14,,14,,34,808,"HK1003 -Blackpoint D2 - Rev.0E DD30092021"
1-5895,SI20UMC5Y47.28,"CONSTRUCTION LDK TRENCH - LDK Trench Slab-Formwork Erection",5121,"HK1003-Rev.0E-3",TT_Task,"55902",-,-,-,0,TK_NotStart,19/10/2021,,20/10/2021,,"SI20UMC5Y47.27 FS","SI20UMC5Y47.27","SI20UMC5Y47.29 FS","SI20UMC5Y47.29",63,,63,,14,,14,,35,808,"HK1003 -Blackpoint D2 - Rev.0E DD30092021"
1-5896,SI20UMC5Y47.29,"CONSTRUCTION LDK TRENCH - LDK Trench Slab-Rebarworks",5121,"HK1003-Rev.0E-3",TT_Task,"55902",-,-,-,0,TK_NotStart,21/10/2021,,22/10/2021,,"SI20UMC5Y47.28 FS","SI20UMC5Y47.28","SI20UMC5Y47.30 FS","SI20UMC5Y47.30",63,,63,,14,,14,,35,808,"HK1003 -Blackpoint D2 - Rev.0E DD30092021"
1-5897,SI20UMC5Y47.30,"CONSTRUCTION LDK TRENCH - LDK Trench Slab-Concrete Pour",5121,"HK1003-Rev.0E-3",TT_Task,"55902",-,-,-,0,TK_NotStart,23/10/2021,,23/10/2021,,"SI20UMC5Y47.29 FS","SI20UMC5Y47.29","SI20UMC5Y47.31 FS","SI20UMC5Y47.31",64,,64,,14,,14,,36,808,"HK1003 -Blackpoint D2 - Rev.0E DD30092021"
1-5898,SI20UMC5Y47.31,"CONSTRUCTION LDK TRENCH - LDK Trench Walls-Rebarworks",5121,"HK1003-Rev.0E-3",TT_Task,"55902",-,-,-,0,TK_NotStart,25/10/2021,,04/11/2021,,"SI20UMC5Y47.30 FS","SI20UMC5Y47.30","SI20UMC5Y47.32 FS","SI20UMC5Y47.32",64,,65,,15,,15,,36,808,"HK1003 -Blackpoint D2 - Rev.0E DD30092021"
1-5899,SI20UMC5Y47.32,"CONSTRUCTION LDK TRENCH - LDK Trench Walls-Formwork",5121,"HK1003-Rev.0E-3",TT_Task,"55902",-,-,-,0,TK_NotStart,05/11/2021,,11/11/2021,,"SI20UMC5Y47.31 FS","SI20UMC5Y47.31","SI20UMC5Y47.33 FS","SI20UMC5Y47.33",65,,66,,15,,15,,37,808,"HK1003 -Blackpoint D2 - Rev.0E DD30092021"
1-5900,SI20UMC5Y47.33,"CONSTRUCTION LDK TRENCH - LDK Trench Walls-Concrete Ppuring",5121,"HK1003-Rev.0E-3",TT_Task,"55902",-,-,-,0,TK_NotStart,12/11/2021,,12/11/2021,,"SI20UMC5Y47.32 FS","SI20UMC5Y47.32","SI20UMC5Y47.34 FS","SI20UMC5Y47.34",66,,66,,15,,15,,38,808,"HK1003 -Blackpoint D2 - Rev.0E DD30092021"
1-5901,SI20UMC5Y47.34,"CONSTRUCTION LDK TRENCH - LDK Trench Walls-Curing",5121,"HK1003-Rev.0E-3",TT_Task,"55902",-,-,-,0,TK_NotStart,13/11/2021,,20/11/2021,,"SI20UMC5Y47.33 FS","SI20UMC5Y47.33","SI20UMC5Y47.35 FS","SI20UMC5Y47.35",67,,68,,15,,15,,38,808,"HK1003 -Blackpoint D2 - Rev.0E DD30092021"
1-5902,SI20UMC5Y47.35,"CONSTRUCTION LDK TRENCH - LDK Trench Walls-Formwork Removal",5121,"HK1003-Rev.0E-3",TT_Task,"55902",-,-,-,0,TK_NotStart,22/11/2021,,22/11/2021,,"SI20UMC5Y47.34 FS","SI20UMC5Y47.34","SI20UMC5Y48 FS","SI20UMC5Y48",68,,68,,15,,15,,39,808,"HK1003 -Blackpoint D2 - Rev.0E DD30092021"
1-5903,SI--URA2-106,"BD - IMPLEMENTATION OF COMMENTS SUBSTRUCTURE-20URA/URD",5121,"HK1003-Rev.0E-3",TT_Task,"55902",-,-,-,100,TK_Complete,31/08/2021,31/08/2021,06/09/2021,06/09/2021,"SI--URA2-105 FS","SI--URA2-105","SI--URA2-104 FS","SI--URA2-104",56,56,57,57,13,13,13,13,27,,"HK1003 -Blackpoint D2 - Rev.0E DD30092021"
1-5904,SI--URA2-107,"BD - CONSENT LETTER SUBSTRUCTURE -20URA/URD",5121,"HK1003-Rev.0E-3",TT_Task,"55902",-,-,-,0,TK_NotStart,06/11/2021,,03/12/2021,,"SI--URA2-104 FS","SI--URA2-104","SI20URA5-52 FS","SI20URA5-52",66,,69,,15,,16,,37,304,"HK1003 -Blackpoint D2 - Rev.0E DD30092021"
1-5905,SI--UHA2-85,"BD - RESUBMISSION & APPROVAL - DETAIL DESIGN CONCRETE - 20UHA",5121,"HK1003-Rev.0E-3",TT_Task,"55902",-,-,-,92,TK_Active,06/09/2021,06/09/2021,01/10/2021,,"SI--UHA2-84 FS","SI--UHA2-84","SI--UHA2-86 FS","SI--UHA2-86",57,57,60,,13,13,14,,28,56,"HK1003 -Blackpoint D2 - Rev.0E DD30092021"
1-5906,SI--UHA2-86,"BD - CONSENT LETTER HRSG DETAIL DESIGN CONCRETE 20UHA",5121,"HK1003-Rev.0E-3",TT_Task,"55902",-,-,-,0,TK_NotStart,02/10/2021,,29/10/2021,,"SI--UHA2-85 FS","SI--UHA2-85","SI20UHA5-15.03 FS","SI20UHA5-15.03",61,,64,,14,,15,,31,56,"HK1003 -Blackpoint D2 - Rev.0E DD30092021"
1-5907,SI--ULA2-82,"BD - IMPLEMENTATION OF COMMENTS - DETAIL DESIGN CONCRETE 20ULA",5121,"HK1003-Rev.0E-3",TT_Task,"55902",-,-,-,100,TK_Complete,01/09/2021,01/09/2021,07/09/2021,07/09/2021,"SI--ULA2-83 FS","SI--ULA2-83","SI--ULA2-84 FS,SI--ULA2-75 FS","SI--ULA2-84,SI--ULA2-75",56,56,57,57,13,13,13,13,28,,"HK1003 -Blackpoint D2 - Rev.0E DD30092021"
1-5908,SI--ULA2-83,"BD - SUBMISSION & APPROVAL - DETAIL DESIGN CONCRETE 20ULA - WITHDRAWN",5121,"HK1003-Rev.0E-3",TT_Mile,"55902",-,-,-,100,TK_Complete,01/09/2021,01/09/2021,01/09/2021,01/09/2021,"SI--ULA2-78 FS","SI--ULA2-78","SI--ULA2-82 FS","SI--ULA2-82",56,56,56,56,13,13,13,13,28,,"HK1003 -Blackpoint D2 - Rev.0E DD30092021"
1-5909,SI--ULA2-84,"BD - RESUBMISSION & APPROVAL - DETAIL DESIGN CONCRETE 20ULA",5121,"HK1003-Rev.0E-3",TT_Task,"55902",-,-,-,37,TK_Active,08/09/2021,08/09/2021,06/11/2021,,"SI--ULA2-82 FS","SI--ULA2-82","SI--ULA2-85 FS","SI--ULA2-85",57,57,66,,13,13,15,,29,856,"HK1003 -Blackpoint D2 - Rev.0E DD30092021"
1-5910,SI--ULA2-85,"BD - CONSENT LETTER DETAIL DESIGN CONCRETE 20ULA",5121,"HK1003-Rev.0E-3",TT_Task,"55902",-,-,-,0,TK_NotStart,07/11/2021,,04/12/2021,,"SI--ULA2-84 FS","SI--ULA2-84","SI--ULA2-81 FS","SI--ULA2-81",66,,70,,15,,16,,37,856,"HK1003 -Blackpoint D2 - Rev.0E DD30092021"
1-5911,SI20UPY2-38,"BD - SUBMISSION & APPROVAL - DETAIL DESIGN CONCRETE 20UPY - WITHDRAWN",5121,"HK1003-Rev.0E-3",TT_Mile,"55902",-,-,-,100,TK_Complete,01/09/2021,01/09/2021,01/09/2021,01/09/2021,"SI20UPY2-25 FS","SI20UPY2-25","SI20UPY2-40 FS","SI20UPY2-40",56,56,56,56,13,13,13,13,28,,"HK1003 -Blackpoint D2 - Rev.0E DD30092021"
1-5912,SI20UPY2-39,"BD - RESUBMISSION & APPROVAL - DETAIL DESIGN CONCRETE 20UPY",5121,"HK1003-Rev.0E-3",TT_Task,"55902",-,-,-,38,TK_Active,08/09/2021,08/09/2021,04/11/2021,,"SI20UPY2-40 FS","SI20UPY2-40","SI20UPY2-30 FS","SI20UPY2-30",57,57,65,,13,13,15,,29,2232,"HK1003 -Blackpoint D2 - Rev.0E DD30092021"
1-5913,SI20UPY2-40,"BD - IMPLEMENTATION OF COMMENTS - DETAIL DESIGN CONCRETE 20UPY",5121,"HK1003-Rev.0E-3",TT_Task,"55902",-,-,-,100,TK_Complete,01/09/2021,01/09/2021,07/09/2021,07/09/2021,"SI20UPY2-38 FS","SI20UPY2-38","SI20UPY2-39 FS,SI20UPY2-37 FS,SI20UPY2-35 FS","SI20UPY2-39,SI20UPY2-37,SI20UPY2-35",56,56,57,57,13,13,13,13,28,,"HK1003 -Blackpoint D2 - Rev.0E DD30092021"
1-5914,SI20UBE5-18.00,"CONSTRUCTION FOUNDATION 20UBE/UBF- Formwork installation part1 baseslab",5121,"HK1003-Rev.0E-3",TT_Task,"55902",-,-,-,0,TK_NotStart,05/12/2021,,16/12/2021,,"SI20UBF5-19 FS","SI20UBF5-19","SI20UBE5-18.02 FS,SI20UBE5-18.01 FS","SI20UBE5-18.02,SI20UBE5-18.01",70,,71,,16,,16,,40,144,"HK1003 -Blackpoint D2 - Rev.0E DD30092021"
1-5915,SI20UBE5-18.01,"CONSTRUCTION FOUNDATION 20UBE/UBF- Rebarfixing and grounding installation part1 baseslab",5121,"HK1003-Rev.0E-3",TT_Task,"55902",-,-,-,0,TK_NotStart,17/12/2021,,09/01/2022,,"SI20UBF5-10 FS,SI20UBF5-19 FS,SI20UBE5-18.00 FS","SI20UBF5-10,SI20UBF5-19,SI20UBE5-18.00","SI20UBE5-18.02 FS","SI20UBE5-18.02",71,,75,,16,,17,,43,144,"HK1003 -Blackpoint D2 - Rev.0E DD30092021"
1-5916,SI20UBE5-18.02,"CONSTRUCTION FOUNDATION 20UBE/UBF- Concreting part1 baseslab",5121,"HK1003-Rev.0E-3",TT_Task,"55902",-,-,-,0,TK_NotStart,10/01/2022,,11/01/2022,,"SI20UBE5-18.00 FS,SI20UBE5-18.01 FS","SI20UBE5-18.00,SI20UBE5-18.01","SI20UBF5-15.01 FS,SI20UBF5-15 FS","SI20UBF5-15.01,SI20UBF5-15",75,,75,,17,,17,,45,144,"HK1003 -Blackpoint D2 - Rev.0E DD30092021"
1-5917,SI20UBF5-15.01,"CONSTRUCTION TRANSFORMER TABLE & WALLS 20UBF- Formwork installation Part2",5121,"HK1003-Rev.0E-3",TT_Task,"55902",-,-,-,0,TK_NotStart,12/01/2022,,25/01/2022,,"SI20UBE5-18.02 FS","SI20UBE5-18.02","SI20UBF5-15.1 FS,SI20UBF5E15.00 SS","SI20UBF5-15.1,SI20UBF5E15.00",75,,77,,17,,18,,45,144,"HK1003 -Blackpoint D2 - Rev.0E DD30092021"
1-5918,SI20UBF5-15.1,"CONSTRUCTION TRANSFORMER TABLE & WALLS 20UBF- Rebarfixing and grounding installation part2",5121,"HK1003-Rev.0E-3",TT_Task,"55902",-,-,-,0,TK_NotStart,26/01/2022,,18/02/2022,,"SI20UBF5-15.01 FS","SI20UBF5-15.01","SI20UBF5-15.2 FS","SI20UBF5-15.2",77,,80,,18,,18,,47,464,"HK1003 -Blackpoint D2 - Rev.0E DD30092021"
1-5919,SI20UBF5-15.2,"CONSTRUCTION TRANSFORMER TABLE & WALLS 20UBF- Concreting part2",5121,"HK1003-Rev.0E-3",TT_Task,"55902",-,-,-,0,TK_NotStart,19/02/2022,,20/02/2022,,"SI20UBF5-15.1 FS","SI20UBF5-15.1","SI20UBE5E47 FS","SI20UBE5E47",81,,81,,18,,18,,50,464,"HK1003 -Blackpoint D2 - Rev.0E DD30092021"
1-5920,SI20UBF5E15.00,"CONSTRUCTION WALLS 20UBF-Working platform and formwork installation stage1 Part3",5121,"HK1003-Rev.0E-3",TT_Task,"55902",-,-,-,0,TK_NotStart,12/01/2022,,01/02/2022,,"SI20UBF5-15.01 SS","SI20UBF5-15.01","SI20UBE5E46 SS,SI20UBF5E15.03 FS,SI20UBF5E15.01 FS","SI20UBE5E46,SI20UBF5E15.03,SI20UBF5E15.01",75,,78,,17,,18,,45,144,"HK1003 -Blackpoint D2 - Rev.0E DD30092021"
1-5921,SI20UBF5E15.01,"CONSTRUCTION WALLS 20UBF-Rebarfixing and grounding installation Part3",5121,"HK1003-Rev.0E-3",TT_Task,"55902",-,-,-,0,TK_NotStart,02/02/2022,,06/03/2022,,"SI20UBF5E15.00 FS","SI20UBF5E15.00","SI20UBF5E15.02 FS","SI20UBF5E15.02",78,,83,,18,,19,,47,144,"HK1003 -Blackpoint D2 - Rev.0E DD30092021"
1-5922,SI20UBF5E15.02,"CONSTRUCTION WALLS 20UBF-Formwork installation stage2 Part3",5121,"HK1003-Rev.0E-3",TT_Task,"55902",-,-,-,0,TK_NotStart,07/03/2022,,22/03/2022,,"SI20UBF5E15.01 FS","SI20UBF5E15.01","SI20UBF5E15.03 FS","SI20UBF5E15.03",83,,85,,19,,19,,52,144,"HK1003 -Blackpoint D2 - Rev.0E DD30092021"
1-5923,SI20UBF5E15.03,"CONSTRUCTION WALLS 20UBF-Concreting stage2 Part3",5121,"HK1003-Rev.0E-3",TT_Task,"55902",-,-,-,0,TK_NotStart,23/03/2022,,25/03/2022,,"SI20UBF5E15.02 FS,SI20UBF5E15.00 FS","SI20UBF5E15.02,SI20UBF5E15.00","SI20UBF5E15.04 FS","SI20UBF5E15.04",85,,85,,19,,20,,53,144,"HK1003 -Blackpoint D2 - Rev.0E DD30092021"
1-5924,SI20UBF5E15.04,"CONSTRUCTION WALLS 20UBF-Remove formwork stage2 Part3",5121,"HK1003-Rev.0E-3",TT_Task,"55902",-,-,-,0,TK_NotStart,26/03/2022,,01/04/2022,,"SI20UBF5E15.03 FS,SI20UBE5E46 FF","SI20UBF5E15.03,SI20UBE5E46","SI20UBF5E45 FS,SI20UBE5E47 FS","SI20UBF5E45,SI20UBE5E47",86,,86,,20,,20,,54,144,"HK1003 -Blackpoint D2 - Rev.0E DD30092021"
1-5925,SI20URA5-17.01,"CONSTRUCTION FOUNDATION BAY1- Apply damproofing",5121,"HK1003-Rev.0E-3",TT_Task,"55902",-,-,-,100,TK_Complete,10/09/2021,10/09/2021,17/09/2021,17/09/2021,"SI20URA5-05 SS","SI20URA5-05","SI20URA5-17.02 FS,SI20URA5-17 SS,SI20URA5-19.01 SS,SI20URA5-17.05 FS","SI20URA5-17.02,SI20URA5-17,SI20URA5-19.01,SI20URA5-17.05",57,57,58,58,13,13,13,13,29,,"HK1003 -Blackpoint D2 - Rev.0E DD30092021"
1-5926,SI20URA5-17.02,"CONSTRUCTION FOUNDATION BAY1- Grounding installation",5121,"HK1003-Rev.0E-3",TT_Task,"55902",-,-,-,100,TK_Complete,18/09/2021,01/09/2021,24/09/2021,12/09/2021,"SI20URA5-17.01 FS","SI20URA5-17.01","SI20URA5-17.03 FS,SI20URA5-17 FS","SI20URA5-17.03,SI20URA5-17",59,56,59,58,13,13,13,13,29,,"HK1003 -Blackpoint D2 - Rev.0E DD30092021"
1-5927,SI20URA5-17.03,"CONSTRUCTION FOUNDATION BAY1- Rebar fabrication",5121,"HK1003-Rev.0E-3",TT_Task,"55902",-,-,-,0,TK_NotStart,01/10/2021,,13/10/2021,,"SI20URA5-17.02 FS","SI20URA5-17.02","SI20URA5-17.04 SS","SI20URA5-17.04",60,,62,,14,,14,,31,560,"HK1003 -Blackpoint D2 - Rev.0E DD30092021"
1-5928,SI20URA5-17.04,"CONSTRUCTION FOUNDATION BAY1- Rebar fixing",5121,"HK1003-Rev.0E-3",TT_Task,"55902",-,-,-,0,TK_NotStart,08/10/2021,,22/10/2021,,"SI20URA5-17.03 SS","SI20URA5-17.03","SI20URA5-17.07 SS,SI20URA5-17.06 FS","SI20URA5-17.07,SI20URA5-17.06",61,,63,,14,,14,,32,560,"HK1003 -Blackpoint D2 - Rev.0E DD30092021"
1-5929,SI20URA5-17.05,"CONSTRUCTION FOUNDATION BAY1- Formwork Erection",5121,"HK1003-Rev.0E-3",TT_Task,"55902",-,-,-,100,TK_Complete,02/09/2021,02/09/2021,28/09/2021,28/09/2021,"SI20URA5-17.01 FS","SI20URA5-17.01","SI20URA5-17.06 FS","SI20URA5-17.06",56,56,60,60,13,13,14,14,28,,"HK1003 -Blackpoint D2 - Rev.0E DD30092021"
1-5930,SI20URA5-17.06,"CONSTRUCTION FOUNDATION BAY1- Installation of tower crane support",5121,"HK1003-Rev.0E-3",TT_Task,"55902",-,-,-,0,TK_NotStart,23/10/2021,,24/10/2021,,"SI20URA5-17.05 FS,SI20URA5-17.04 FS","SI20URA5-17.05,SI20URA5-17.04","SI20URA5-17.07 FS","SI20URA5-17.07",64,,64,,14,,14,,36,560,"HK1003 -Blackpoint D2 - Rev.0E DD30092021"
1-5931,SI20URA5-17.07,"CONSTRUCTION FOUNDATION BAY1- Installation of Cathodic protection",5121,"HK1003-Rev.0E-3",TT_Task,"55902",-,-,-,0,TK_NotStart,25/10/2021,,28/10/2021,,"SI20URA5-17.06 FS,SI20URA5-17.04 SS","SI20URA5-17.06,SI20URA5-17.04","SI20URA5-17.08 FS","SI20URA5-17.08",64,,64,,15,,15,,36,560,"HK1003 -Blackpoint D2 - Rev.0E DD30092021"
1-5932,SI20URA5-17.08,"CONSTRUCTION FOUNDATION BAY1- Concreting",5121,"HK1003-Rev.0E-3",TT_Task,"55902",-,-,-,0,TK_NotStart,29/10/2021,,29/10/2021,,"SI20URA5-17.07 FS,SI--PAD4-40 FS","SI20URA5-17.07,SI--PAD4-40","SI20URA5-17.09 FS","SI20URA5-17.09",64,,64,,15,,15,,36,560,"HK1003 -Blackpoint D2 - Rev.0E DD30092021"
1-5933,SI20URA5-17.09,"CONSTRUCTION FOUNDATION BAY1- Curing of Concrete",5121,"HK1003-Rev.0E-3",TT_Task,"55902",-,-,-,0,TK_NotStart,30/10/2021,,02/11/2021,,"SI20URA5-17.08 FS","SI20URA5-17.08","SI20URA5-17.10 SS","SI20URA5-17.10",65,,65,,15,,15,,36,560,"HK1003 -Blackpoint D2 - Rev.0E DD30092021"
1-5934,SI20URA5-17.10,"CONSTRUCTION FOUNDATION BAY1-Formwork desmantling",5121,"HK1003-Rev.0E-3",TT_Task,"55902",-,-,-,0,TK_NotStart,30/10/2021,,01/11/2021,,"SI20URA5-17.09 SS","SI20URA5-17.09","SI20URA5-17 FF,SI20URA5-52 FS","SI20URA5-17,SI20URA5-52",65,,65,,15,,15,,36,560,"HK1003 -Blackpoint D2 - Rev.0E DD30092021"
1-5935,SI20URA5-19.01,"CONSTRUCTION FOUNDATION BAY2A- Apply damproofing",5121,"HK1003-Rev.0E-3",TT_Task,"55902",-,-,-,0,TK_NotStart,30/09/2021,,03/10/2021,,"SI20URA5-17.01 SS","SI20URA5-17.01","SI20URA5-19.02 FS,SI20URA5-19 SS,SI20URA5-48.01 SS,SI20URA5-19.05 SS","SI20URA5-19.02,SI20URA5-19,SI20URA5-48.01,SI20URA5-19.05",60,,61,,14,,14,,30,280,"HK1003 -Blackpoint D2 - Rev.0E DD30092021"
1-5936,SI20URA5-19.02,"CONSTRUCTION FOUNDATION BAY2A- Grounding installation",5121,"HK1003-Rev.0E-3",TT_Task,"55902",-,-,-,0,TK_NotStart,04/10/2021,,06/10/2021,,"SI20URA5-19.01 FS","SI20URA5-19.01","SI20URA5-19.03 FS","SI20URA5-19.03",61,,61,,14,,14,,31,624,"HK1003 -Blackpoint D2 - Rev.0E DD30092021"
1-5937,SI20URA5-19.03,"CONSTRUCTION FOUNDATION BAY2A- Rebar fabrication",5121,"HK1003-Rev.0E-3",TT_Task,"55902",-,-,-,0,TK_NotStart,07/10/2021,,15/10/2021,,"SI20URA5-19.02 FS","SI20URA5-19.02","SI20URA5-19.04 SS","SI20URA5-19.04",61,,62,,14,,14,,32,624,"HK1003 -Blackpoint D2 - Rev.0E DD30092021"
1-5938,SI20URA5-19.04,"CONSTRUCTION FOUNDATION BAY2A- Rebar fixing",5121,"HK1003-Rev.0E-3",TT_Task,"55902",-,-,-,0,TK_NotStart,11/10/2021,,15/10/2021,,"SI20URA5-19.03 SS","SI20URA5-19.03","SI20URA5-19.06 FS","SI20URA5-19.06",62,,62,,14,,14,,33,624,"HK1003 -Blackpoint D2 - Rev.0E DD30092021"
1-5939,SI20URA5-19.05,"CONSTRUCTION FOUNDATION BAY2A- Formwork Erection",5121,"HK1003-Rev.0E-3",TT_Task,"55902",-,-,-,0,TK_NotStart,02/10/2021,,04/10/2021,,"SI20URA5-19.01 SS","SI20URA5-19.01","SI20URA5-19.06 FS","SI20URA5-19.06",61,,61,,14,,14,,31,712,"HK1003 -Blackpoint D2 - Rev.0E DD30092021"
1-5940,SI20URA5-19.06,"CONSTRUCTION FOUNDATION BAY2A- Installation of Cathodic protection",5121,"HK1003-Rev.0E-3",TT_Task,"55902",-,-,-,0,TK_NotStart,16/10/2021,,16/10/2021,,"SI20URA5-19.05 FS,SI20URA5-19.04 FS","SI20URA5-19.05,SI20URA5-19.04","SI20URA5-19.07 FS","SI20URA5-19.07",63,,63,,14,,14,,34,624,"HK1003 -Blackpoint D2 - Rev.0E DD30092021"
1-5941,SI20URA5-19.07,"CONSTRUCTION FOUNDATION BAY2A- Concreting",5121,"HK1003-Rev.0E-3",TT_Task,"55902",-,-,-,0,TK_NotStart,17/10/2021,,20/10/2021,,"SI20URA5-19.06 FS","SI20URA5-19.06","SI20URA5-19.08 FS","SI20URA5-19.08",63,,63,,14,,14,,34,624,"HK1003 -Blackpoint D2 - Rev.0E DD30092021"
1-5942,SI20URA5-19.08,"CONSTRUCTION FOUNDATION BAY2A-  Curing of Concrete",5121,"HK1003-Rev.0E-3",TT_Task,"55902",-,-,-,0,TK_NotStart,21/10/2021,,22/10/2021,,"SI20URA5-19.07 FS","SI20URA5-19.07","SI20URA5-19 FF,SI20URA5-19.09 FS","SI20URA5-19,SI20URA5-19.09",63,,63,,14,,14,,35,624,"HK1003 -Blackpoint D2 - Rev.0E DD30092021"
1-5943,SI20URA5-48.01,"CONSTRUCTION FOUNDATION BAY2B- Apply damproofing",5121,"HK1003-Rev.0E-3",TT_Task,"55902",-,-,-,0,TK_NotStart,30/09/2021,,04/10/2021,,"SI20URA5-19.01 SS,SI--URA2-89 FS","SI20URA5-19.01,SI--URA2-89","SI20URA5-48.02 SS,SI20URA5-49.01 FS,SI20URA5-48.04 FS,SI20URA5-48 SS","SI20URA5-48.02,SI20URA5-49.01,SI20URA5-48.04,SI20URA5-48",60,,61,,14,,14,,30,280,"HK1003 -Blackpoint D2 - Rev.0E DD30092021"
1-5944,SI20URA5-48.02,"CONSTRUCTION FOUNDATION BAY2B- Grounding installation",5121,"HK1003-Rev.0E-3",TT_Task,"55902",-,-,-,0,TK_NotStart,30/09/2021,,04/10/2021,,"SI20URA5-48.01 SS","SI20URA5-48.01","SI20URA5-48.03 SS","SI20URA5-48.03",60,,61,,14,,14,,30,576,"HK1003 -Blackpoint D2 - Rev.0E DD30092021"
1-5945,SI20URA5-48.03,"CONSTRUCTION FOUNDATION BAY2B- Rebar fabrication",5121,"HK1003-Rev.0E-3",TT_Task,"55902",-,-,-,0,TK_NotStart,30/09/2021,,12/10/2021,,"SI20URA5-48.02 SS","SI20URA5-48.02","SI20URA5-48.05 SS","SI20URA5-48.05",60,,62,,14,,14,,30,576,"HK1003 -Blackpoint D2 - Rev.0E DD30092021"
1-5946,SI20URA5-48.05,"CONSTRUCTION FOUNDATION BAY2B- Rebar fixing",5121,"HK1003-Rev.0E-3",TT_Task,"55902",-,-,-,0,TK_NotStart,08/10/2021,,21/10/2021,,"SI20URA5-48.03 SS","SI20URA5-48.03","SI20URA5-48.07 FS","SI20URA5-48.07",61,,63,,14,,14,,32,576,"HK1003 -Blackpoint D2 - Rev.0E DD30092021"
1-5947,SI20URA5-48.04,"CONSTRUCTION FOUNDATION BAY2B- Formwork Erection",5121,"HK1003-Rev.0E-3",TT_Task,"55902",-,-,-,0,TK_NotStart,05/10/2021,,17/10/2021,,"SI20URA5-48.01 FS","SI20URA5-48.01","SI20URA5-48.06 FS","SI20URA5-48.06",61,,63,,14,,14,,31,568,"HK1003 -Blackpoint D2 - Rev.0E DD30092021"
1-5948,SI20URA5-48.06,"CONSTRUCTION FOUNDATION BAY2B- Installation of Cathodic protection",5121,"HK1003-Rev.0E-3",TT_Task,"55902",-,-,-,0,TK_NotStart,18/10/2021,,22/10/2021,,"SI20URA5-48.04 FS","SI20URA5-48.04","SI20URA5-48.07 FS","SI20URA5-48.07",63,,63,,14,,14,,35,568,"HK1003 -Blackpoint D2 - Rev.0E DD30092021"
1-5949,SI20URA5-48.07,"CONSTRUCTION FOUNDATION BAY2B- Concreting",5121,"HK1003-Rev.0E-3",TT_Task,"55902",-,-,-,0,TK_NotStart,23/10/2021,,23/10/2021,,"SI20URA5-48.06 FS,SI20URA5-48.05 FS","SI20URA5-48.06,SI20URA5-48.05","SI20URA5-48.08 FS","SI20URA5-48.08",64,,64,,14,,14,,36,568,"HK1003 -Blackpoint D2 - Rev.0E DD30092021"
1-5950,SI20URA5-48.08,"CONSTRUCTION FOUNDATION BAY2B-Curing of Concrete",5121,"HK1003-Rev.0E-3",TT_Task,"55902",-,-,-,0,TK_NotStart,24/10/2021,,27/10/2021,,"SI20URA5-48.07 FS","SI20URA5-48.07","SI20URA5-48.09 FS","SI20URA5-48.09",64,,64,,14,,15,,36,568,"HK1003 -Blackpoint D2 - Rev.0E DD30092021"
1-5951,SI20URA5-48.09,"CONSTRUCTION FOUNDATION BAY2B-Formwork desmantling",5121,"HK1003-Rev.0E-3",TT_Task,"55902",-,-,-,0,TK_NotStart,28/10/2021,,31/10/2021,,"SI20URA5-48.08 FS","SI20URA5-48.08","SI20URA5-48 FF,SI20URA5-52 FS","SI20URA5-48,SI20URA5-52",64,,65,,15,,15,,36,568,"HK1003 -Blackpoint D2 - Rev.0E DD30092021"
1-5952,SI20URA5-19.09,"CONSTRUCTION FOUNDATION BAY2A-  Formwork desmantling",5121,"HK1003-Rev.0E-3",TT_Task,"55902",-,-,-,0,TK_NotStart,23/10/2021,,24/10/2021,,"SI20URA5-19.08 FS","SI20URA5-19.08","SI20URA5-19 FF,SI20URA5-52 FS","SI20URA5-19,SI20URA5-52",64,,64,,14,,14,,36,624,"HK1003 -Blackpoint D2 - Rev.0E DD30092021"
1-5953,SI20URA5-49.01,"CONSTRUCTION FOUNDATION BAY2- Apply damproofing",5121,"HK1003-Rev.0E-3",TT_Task,"55902",-,-,-,0,TK_NotStart,17/10/2021,,24/10/2021,,"SI20URA5-48.01 FS","SI20URA5-48.01","SI20URA5-49.02 SS,SI20URA5-49 SS","SI20URA5-49.02,SI20URA5-49",63,,64,,14,,14,,34,280,"HK1003 -Blackpoint D2 - Rev.0E DD30092021"
1-5954,SI20URA5-49.02,"CONSTRUCTION FOUNDATION BAY2- Grounding installation",5121,"HK1003-Rev.0E-3",TT_Task,"55902",-,-,-,0,TK_NotStart,21/10/2021,,25/10/2021,,"SI20URA5-49.01 SS","SI20URA5-49.01","SI20URA5-49.03 FS","SI20URA5-49.03",63,,64,,14,,15,,35,280,"HK1003 -Blackpoint D2 - Rev.0E DD30092021"
1-5955,SI20URA5-49.03,"CONSTRUCTION FOUNDATION BAY2- Rebar fabrication",5121,"HK1003-Rev.0E-3",TT_Task,"55902",-,-,-,0,TK_NotStart,30/10/2021,,14/11/2021,,"SI20URA5-49.02 FS","SI20URA5-49.02","SI20URA5-49.04 SS,SI20URA5-49.05 SS","SI20URA5-49.04,SI20URA5-49.05",65,,67,,15,,15,,36,280,"HK1003 -Blackpoint D2 - Rev.0E DD30092021"
1-5956,SI20URA5-49.04,"CONSTRUCTION FOUNDATION BAY2- Rebar fixing",5121,"HK1003-Rev.0E-3",TT_Task,"55902",-,-,-,0,TK_NotStart,10/11/2021,,25/11/2021,,"SI20URA5-49.03 SS","SI20URA5-49.03","SI20URA5-49.07 FS","SI20URA5-49.07",66,,68,,15,,16,,38,280,"HK1003 -Blackpoint D2 - Rev.0E DD30092021"
1-5957,SI20URA5-49.05,"CONSTRUCTION FOUNDATION BAY2- Formwork Erection",5121,"HK1003-Rev.0E-3",TT_Task,"55902",-,-,-,0,TK_NotStart,06/11/2021,,29/11/2021,,"SI20URA5-49.03 SS","SI20URA5-49.03","SI20URA5-49.06 SF","SI20URA5-49.06",66,,69,,15,,16,,37,384,"HK1003 -Blackpoint D2 - Rev.0E DD30092021"
1-5958,SI20URA5-49.06,"CONSTRUCTION FOUNDATION BAY2- Installation of tower crane support",5121,"HK1003-Rev.0E-3",TT_Task,"55902",-,-,-,0,TK_NotStart,11/11/2021,,12/11/2021,,"SI20URA5-49.05 SF","SI20URA5-49.05","SI20URA5-49.07 FS","SI20URA5-49.07",66,,66,,15,,15,,38,384,"HK1003 -Blackpoint D2 - Rev.0E DD30092021"
1-5959,SI20URA5-49.07,"CONSTRUCTION FOUNDATION BAY2- Installation of Cathodic protection",5121,"HK1003-Rev.0E-3",TT_Task,"55902",-,-,-,0,TK_NotStart,26/11/2021,,30/11/2021,,"SI20URA5-49.06 FS,SI20URA5-49.04 FS","SI20URA5-49.06,SI20URA5-49.04","SI20URA5-49.08 FS","SI20URA5-49.08",68,,69,,16,,16,,39,280,"HK1003 -Blackpoint D2 - Rev.0E DD30092021"
1-5960,SI20URA5-49.08,"CONSTRUCTION FOUNDATION BAY2- Concreting",5121,"HK1003-Rev.0E-3",TT_Task,"55902",-,-,-,0,TK_NotStart,01/12/2021,,01/12/2021,,"SI20URA5-49.07 FS","SI20URA5-49.07","SI20URA5-49.09 FS","SI20URA5-49.09",69,,69,,16,,16,,40,280,"HK1003 -Blackpoint D2 - Rev.0E DD30092021"
1-5961,SI20URA5-49.09,"CONSTRUCTION FOUNDATION BAY2- Curing of Concrete",5121,"HK1003-Rev.0E-3",TT_Task,"55902",-,-,-,0,TK_NotStart,02/12/2021,,05/12/2021,,"SI20URA5-49.08 FS","SI20URA5-49.08","SI20URA5-49.10 SS","SI20URA5-49.10",69,,70,,16,,16,,40,280,"HK1003 -Blackpoint D2 - Rev.0E DD30092021"
1-5962,SI20URA5-49.10,"CONSTRUCTION FOUNDATION BAY2- Formwork desmantling",5121,"HK1003-Rev.0E-3",TT_Task,"55902",-,-,-,0,TK_NotStart,02/12/2021,,06/12/2021,,"SI20URA5-49.09 SS","SI20URA5-49.09","SI20URA5-49 FF,SI20URA5-52 FS","SI20URA5-49,SI20URA5-52",69,,70,,16,,16,,40,280,"HK1003 -Blackpoint D2 - Rev.0E DD30092021"
1-5963,SI20UMC5B75.01,"WORK PREPARATION FOUNDATION 20UMC- Part1 SW Blinding",5121,"HK1003-Rev.0E-3",TT_Task,"55902",-,-,-,0,TK_NotStart,17/10/2021,,19/10/2021,,"SI20UMC5B75.00 FS","SI20UMC5B75.00","SI20UMC5B75.02 FS","SI20UMC5B75.02",63,,63,,14,,14,,34,112,"HK1003 -Blackpoint D2 - Rev.0E DD30092021"
1-5964,SI20UMC5B75.00,"WORK PREPARATION FOUNDATION 20UMC- Part1 SW Excavation",5121,"HK1003-Rev.0E-3",TT_Task,"55902",-,-,-,0,TK_NotStart,08/10/2021,,16/10/2021,,"SI20UMC5A15.11 FS","SI20UMC5A15.11","SI20UMC5B75.01 FS,SI20UMC5B75 SS","SI20UMC5B75.01,SI20UMC5B75",61,,63,,14,,14,,32,112,"HK1003 -Blackpoint D2 - Rev.0E DD30092021"
1-5965,SI20UMC5B75.02,"WORK PREPARATION FOUNDATION 20UMC- Part1 SW Pile trimming/Plate Welding/U-bar installation",5121,"HK1003-Rev.0E-3",TT_Task,"55902",-,-,-,0,TK_NotStart,20/10/2021,,02/11/2021,,"SI20UMC5B75.01 FS","SI20UMC5B75.01","SI20UMC5B90.00 FS","SI20UMC5B90.00",63,,65,,14,,15,,35,112,"HK1003 -Blackpoint D2 - Rev.0E DD30092021"
1-5966,SI20UMC5B90.01,"CONCRETE CONSTRUCTION BUILDING FOUNDATION 20UMC- Part1 SW Rebarfixing, grounding install, CJ prep. for pile cap",5121,"HK1003-Rev.0E-3",TT_Task,"55902",-,-,-,0,TK_NotStart,12/11/2021,,23/11/2021,,"SI20UMC5B90.00 FS","SI20UMC5B90.00","SI20UMC5B90.02 FS","SI20UMC5B90.02",66,,68,,15,,15,,38,280,"HK1003 -Blackpoint D2 - Rev.0E DD30092021"
1-5967,SI20UMC5B90.00,"CONCRETE CONSTRUCTION BUILDING FOUNDATION 20UMC- Part1 SW Formwork for pile cap",5121,"HK1003-Rev.0E-3",TT_Task,"55902",-,-,-,0,TK_NotStart,03/11/2021,,11/11/2021,,"SI20UMC5B75.02 FS","SI20UMC5B75.02","SI20UMC5B90.01 FS,SI20UMC5B90.03 SS,SI20UMC5B90 SS","SI20UMC5B90.01,SI20UMC5B90.03,SI20UMC5B90",65,,66,,15,,15,,37,112,"HK1003 -Blackpoint D2 - Rev.0E DD30092021"
1-5968,SI20UMC5B90.02,"CONCRETE CONSTRUCTION BUILDING FOUNDATION 20UMC- Part1 SW Concrete pouring for pile cap",5121,"HK1003-Rev.0E-3",TT_Task,"55902",-,-,-,0,TK_NotStart,24/11/2021,,24/11/2021,,"SI20UMC5B90.01 FS","SI20UMC5B90.01","SI20UMC5B45 FS","SI20UMC5B45",68,,68,,16,,16,,39,280,"HK1003 -Blackpoint D2 - Rev.0E DD30092021"
1-5969,SI20UMC5B90.03,"CONCRETE CONSTRUCTION BUILDING FOUNDATION 20UMC- Part1 SW Formwork for tie beam",5121,"HK1003-Rev.0E-3",TT_Task,"55902",-,-,-,0,TK_NotStart,09/11/2021,,18/11/2021,,"SI20UMC5B90.00 SS","SI20UMC5B90.00","SI20UMC5B90.04 FS,SI20UMC5B90.12 SS,SI20UMC5B90.06 FS","SI20UMC5B90.04,SI20UMC5B90.12,SI20UMC5B90.06",66,,67,,15,,15,,37,112,"HK1003 -Blackpoint D2 - Rev.0E DD30092021"
1-5970,SI20UMC5B90.04,"CONCRETE CONSTRUCTION BUILDING FOUNDATION 20UMC- Part1 SW Rebarfixing for tie beam",5121,"HK1003-Rev.0E-3",TT_Task,"55902",-,-,-,0,TK_NotStart,19/11/2021,,30/11/2021,,"SI20UMC5B90.03 FS","SI20UMC5B90.03","SI20UMC5B90.05 FS","SI20UMC5B90.05",67,,69,,15,,16,,39,224,"HK1003 -Blackpoint D2 - Rev.0E DD30092021"
1-5971,SI20UMC5B90.05,"CONCRETE CONSTRUCTION BUILDING FOUNDATION 20UMC- Part1 SW Concrete pouring for tie beam",5121,"HK1003-Rev.0E-3",TT_Task,"55902",-,-,-,0,TK_NotStart,01/12/2021,,01/12/2021,,"SI20UMC5B90.04 FS","SI20UMC5B90.04","SI20UMC5B45 FS","SI20UMC5B45",69,,69,,16,,16,,40,224,"HK1003 -Blackpoint D2 - Rev.0E DD30092021"
1-5972,SI20UMC5B90.06,"CONCRETE CONSTRUCTION BUILDING FOUNDATION 20UMC- Part1 SW Formwork erection baseslab",5121,"HK1003-Rev.0E-3",TT_Task,"55902",-,-,-,0,TK_NotStart,20/11/2021,,27/11/2021,,"SI20UMC5B90.03 FS","SI20UMC5B90.03","SI20UMC5B90.07 FS","SI20UMC5B90.07",68,,69,,15,,16,,39,152,"HK1003 -Blackpoint D2 - Rev.0E DD30092021"
1-5973,SI20UMC5B90.07,"CONCRETE CONSTRUCTION BUILDING FOUNDATION 20UMC- Part1 SW Rebarfixing baseslab",5121,"HK1003-Rev.0E-3",TT_Task,"55902",-,-,-,0,TK_NotStart,28/11/2021,,09/12/2021,,"SI20UMC5B90.06 FS","SI20UMC5B90.06","SI20UMC5B90.08 FS","SI20UMC5B90.08",69,,70,,16,,16,,40,152,"HK1003 -Blackpoint D2 - Rev.0E DD30092021"
1-5974,SI20UMC5B90.08,"CONCRETE CONSTRUCTION BUILDING FOUNDATION 20UMC- Part1 SW Concrete pouring baseslab",5121,"HK1003-Rev.0E-3",TT_Task,"55902",-,-,-,0,TK_NotStart,10/12/2021,,10/12/2021,,"SI20UMC5B90.07 FS","SI20UMC5B90.07","SI20UMC5B45 FS","SI20UMC5B45",70,,70,,16,,16,,42,152,"HK1003 -Blackpoint D2 - Rev.0E DD30092021"
1-5975,SI20UMC5B75.03,"WORK PREPARATION FOUNDATION 20UMC- Part2 NW  Excavation",5121,"HK1003-Rev.0E-3",TT_Task,"55902",-,-,-,191,TK_Active,09/09/2021,09/09/2021,19/09/2021,,"","","SI20UMC5B75.04 FS","SI20UMC5B75.04",57,57,59,,13,13,13,,29,12216,"HK1003 -Blackpoint D2 - Rev.0E DD30092021"
1-5976,SI20UMC5B75.04,"WORK PREPARATION FOUNDATION 20UMC- Part2 NW  Blinding",5121,"HK1003-Rev.0E-3",TT_Task,"55902",-,-,-,333,TK_Active,20/09/2021,20/09/2021,22/09/2021,,"SI20UMC5B75.03 FS","SI20UMC5B75.03","SI20UMC5B75.05 FS","SI20UMC5B75.05",59,59,59,,13,13,13,,29,12384,"HK1003 -Blackpoint D2 - Rev.0E DD30092021"
1-5977,SI20UMC5B75.05,"WORK PREPARATION FOUNDATION 20UMC- Part2 NW  Pile trimming/Plate Welding/U-bar installation",5121,"HK1003-Rev.0E-3",TT_Task,"55902",-,-,-,14,TK_Active,23/09/2021,28/09/2021,06/10/2021,,"SI20UMC5B75.04 FS","SI20UMC5B75.04","SI20UMC5B90.09 FS,SI20UMC5B75.06 FS","SI20UMC5B90.09,SI20UMC5B75.06",59,60,61,,13,14,14,,30,24,"HK1003 -Blackpoint D2 - Rev.0E DD30092021"
1-5978,SI20UMC5B90.09,"CONCRETE CONSTRUCTION BUILDING FOUNDATION 20UMC- Part2 NW Formwork pile cap",5121,"HK1003-Rev.0E-3",TT_Task,"55902",-,-,-,0,TK_NotStart,11/10/2021,,19/10/2021,,"SI20UMC5B75.05 FS","SI20UMC5B75.05","SI20UMC5B90.10 FS","SI20UMC5B90.10",62,,63,,14,,14,,33,464,"HK1003 -Blackpoint D2 - Rev.0E DD30092021"
1-5979,SI20UMC5B90.11,"CONCRETE CONSTRUCTION BUILDING FOUNDATION 20UMC- Part2 NW Concrete pouring for pile cap",5121,"HK1003-Rev.0E-3",TT_Task,"55902",-,-,-,0,TK_NotStart,01/11/2021,,01/11/2021,,"SI20UMC5B90.10 FS","SI20UMC5B90.10","SI20UMC5B45 FS","SI20UMC5B45",65,,65,,15,,15,,37,464,"HK1003 -Blackpoint D2 - Rev.0E DD30092021"
1-5980,SI20UMC5B90.10,"CONCRETE CONSTRUCTION BUILDING FOUNDATION 20UMC- Part2 NW Rebarfixing, grounding install, CJ prep. for pile cap",5121,"HK1003-Rev.0E-3",TT_Task,"55902",-,-,-,0,TK_NotStart,20/10/2021,,31/10/2021,,"SI20UMC5B90.09 FS","SI20UMC5B90.09","SI20UMC5B90.11 FS","SI20UMC5B90.11",63,,65,,14,,15,,35,464,"HK1003 -Blackpoint D2 - Rev.0E DD30092021"
1-5981,SI20UMC5B90.12,"CONCRETE CONSTRUCTION BUILDING FOUNDATION 20UMC- Part2 SW Formwork for tie beam",5121,"HK1003-Rev.0E-3",TT_Task,"55902",-,-,-,0,TK_NotStart,14/11/2021,,23/11/2021,,"SI20UMC5B90.03 SS","SI20UMC5B90.03","SI20UMC5B90.13 FS","SI20UMC5B90.13",67,,68,,15,,15,,38,112,"HK1003 -Blackpoint D2 - Rev.0E DD30092021"
1-5982,SI20UMC5B90.13,"CONCRETE CONSTRUCTION BUILDING FOUNDATION 20UMC- Part2 SW Rebarfixing for tie beam",5121,"HK1003-Rev.0E-3",TT_Task,"55902",-,-,-,0,TK_NotStart,24/11/2021,,05/12/2021,,"SI20UMC5B90.12 FS","SI20UMC5B90.12","SI20UMC5B90.14 FS,SI20UMC5B90.15 SS","SI20UMC5B90.14,SI20UMC5B90.15",68,,70,,16,,16,,39,112,"HK1003 -Blackpoint D2 - Rev.0E DD30092021"
1-5983,SI20UMC5B90.14,"CONCRETE CONSTRUCTION BUILDING FOUNDATION 20UMC- Part2 SW Concrete pouring for tie beam",5121,"HK1003-Rev.0E-3",TT_Task,"55902",-,-,-,0,TK_NotStart,06/12/2021,,06/12/2021,,"SI20UMC5B90.13 FS","SI20UMC5B90.13","SI20UMC5B45 FS","SI20UMC5B45",70,,70,,16,,16,,41,184,"HK1003 -Blackpoint D2 - Rev.0E DD30092021"
1-5984,SI20UMC5B90.15,"CONCRETE CONSTRUCTION BUILDING FOUNDATION 20UMC- Part2 SW Formwork for baseslab",5121,"HK1003-Rev.0E-3",TT_Task,"55902",-,-,-,0,TK_NotStart,24/11/2021,,01/12/2021,,"SI20UMC5B90.13 SS","SI20UMC5B90.13","SI20UMC5B90.16 FS","SI20UMC5B90.16",68,,69,,16,,16,,39,112,"HK1003 -Blackpoint D2 - Rev.0E DD30092021"
1-5985,SI20UMC5B90.16,"CONCRETE CONSTRUCTION BUILDING FOUNDATION 20UMC- Part2 SW Rebarfixing for baseslab",5121,"HK1003-Rev.0E-3",TT_Task,"55902",-,-,-,0,TK_NotStart,02/12/2021,,13/12/2021,,"SI20UMC5B90.15 FS","SI20UMC5B90.15","SI20UMC5B90.17 FS","SI20UMC5B90.17",69,,71,,16,,16,,40,112,"HK1003 -Blackpoint D2 - Rev.0E DD30092021"
1-5986,SI20UMC5B90.17,"CONCRETE CONSTRUCTION BUILDING FOUNDATION 20UMC- Part2 SW Concrete pouring for baseslab",5121,"HK1003-Rev.0E-3",TT_Task,"55902",-,-,-,0,TK_NotStart,14/12/2021,,14/12/2021,,"SI20UMC5B90.16 FS","SI20UMC5B90.16","SI20UMC5B90.20 FS","SI20UMC5B90.20",71,,71,,16,,16,,42,112,"HK1003 -Blackpoint D2 - Rev.0E DD30092021"
1-5987,SI20UMC5B75.06,"WORK PREPARATION FOUNDATION 20UMC- Part3 NE Excavation",5121,"HK1003-Rev.0E-3",TT_Task,"55902",-,-,-,0,TK_NotStart,11/10/2021,,19/10/2021,,"SI20UMC5B75.05 FS","SI20UMC5B75.05","SI20UMC5B75.07 FS","SI20UMC5B75.07",62,,63,,14,,14,,33,24,"HK1003 -Blackpoint D2 - Rev.0E DD30092021"
1-5988,SI20UMC5B75.07,"WORK PREPARATION FOUNDATION 20UMC- Part3 NE Blinding",5121,"HK1003-Rev.0E-3",TT_Task,"55902",-,-,-,0,TK_NotStart,20/10/2021,,22/10/2021,,"SI20UMC5B75.06 FS","SI20UMC5B75.06","SI20UMC5B75.08 FS","SI20UMC5B75.08",63,,63,,14,,14,,35,24,"HK1003 -Blackpoint D2 - Rev.0E DD30092021"
1-5989,SI20UMC5B75.08,"WORK PREPARATION FOUNDATION 20UMC- Part3 NE Pile trimming/Plate Welding/U-bar installation",5121,"HK1003-Rev.0E-3",TT_Task,"55902",-,-,-,0,TK_NotStart,23/10/2021,,05/11/2021,,"SI20UMC5B75.07 FS","SI20UMC5B75.07","SI20UMC5B90.18 FS,SI20UMC5B75.09 SS","SI20UMC5B90.18,SI20UMC5B75.09",64,,65,,14,,15,,36,24,"HK1003 -Blackpoint D2 - Rev.0E DD30092021"
1-5990,SI20UMC5B90.18,"CONCRETE CONSTRUCTION BUILDING FOUNDATION 20UMC- Part3 NE Formwork pile cap",5121,"HK1003-Rev.0E-3",TT_Task,"55902",-,-,-,0,TK_NotStart,06/11/2021,,14/11/2021,,"SI20UMC5B75.08 FS","SI20UMC5B75.08","SI20UMC5B90.19 FS,SI20UMC5B90.21 FS","SI20UMC5B90.19,SI20UMC5B90.21",66,,67,,15,,15,,37,112,"HK1003 -Blackpoint D2 - Rev.0E DD30092021"
1-5991,SI20UMC5B90.19,"CONCRETE CONSTRUCTION BUILDING FOUNDATION 20UMC- Part3 NE Rebarfixing, grounding install, CJ prep. for pile cap",5121,"HK1003-Rev.0E-3",TT_Task,"55902",-,-,-,0,TK_NotStart,15/11/2021,,26/11/2021,,"SI20UMC5B90.18 FS","SI20UMC5B90.18","SI20UMC5B90.20 FS","SI20UMC5B90.20",67,,68,,15,,16,,38,256,"HK1003 -Blackpoint D2 - Rev.0E DD30092021"
1-5992,SI20UMC5B90.20,"CONCRETE CONSTRUCTION BUILDING FOUNDATION 20UMC- Part3 NE Concrete pouring pile cap",5121,"HK1003-Rev.0E-3",TT_Task,"55902",-,-,-,0,TK_NotStart,15/12/2021,,15/12/2021,,"SI20UMC5B90.19 FS,SI20UMC5B90.17 FS","SI20UMC5B90.19,SI20UMC5B90.17","SI20UMC5B45 FS","SI20UMC5B45",71,,71,,16,,16,,42,112,"HK1003 -Blackpoint D2 - Rev.0E DD30092021"
1-5993,SI20UMC5B90.21,"CONCRETE CONSTRUCTION BUILDING FOUNDATION 20UMC- Part3 NE Formwork for tie beam",5121,"HK1003-Rev.0E-3",TT_Task,"55902",-,-,-,0,TK_NotStart,15/11/2021,,24/11/2021,,"SI20UMC5B90.18 FS","SI20UMC5B90.18","SI20UMC5B90.22 FS,SI20UMC5B90.24 FS","SI20UMC5B90.22,SI20UMC5B90.24",67,,68,,15,,16,,38,112,"HK1003 -Blackpoint D2 - Rev.0E DD30092021"
1-5994,SI20UMC5B90.22,"CONCRETE CONSTRUCTION BUILDING FOUNDATION 20UMC- Part3 NE Rebarwork for tie beam",5121,"HK1003-Rev.0E-3",TT_Task,"55902",-,-,-,0,TK_NotStart,25/11/2021,,06/12/2021,,"SI20UMC5B90.21 FS","SI20UMC5B90.21","SI20UMC5B90.23 FS","SI20UMC5B90.23",68,,70,,16,,16,,39,176,"HK1003 -Blackpoint D2 - Rev.0E DD30092021"
1-5995,SI20UMC5B90.23,"CONCRETE CONSTRUCTION BUILDING FOUNDATION 20UMC- Part3 NE Concreting for tie beam",5121,"HK1003-Rev.0E-3",TT_Task,"55902",-,-,-,0,TK_NotStart,07/12/2021,,07/12/2021,,"SI20UMC5B90.22 FS","SI20UMC5B90.22","SI20UMC5B45 FS","SI20UMC5B45",70,,70,,16,,16,,41,176,"HK1003 -Blackpoint D2 - Rev.0E DD30092021"
1-5996,SI20UMC5B90.24,"CONCRETE CONSTRUCTION BUILDING FOUNDATION 20UMC- Part3 NE Formwork for baseslab",5121,"HK1003-Rev.0E-3",TT_Task,"55902",-,-,-,0,TK_NotStart,25/11/2021,,02/12/2021,,"SI20UMC5B90.21 FS","SI20UMC5B90.21","SI20UMC5B90.25 FS","SI20UMC5B90.25",68,,69,,16,,16,,39,112,"HK1003 -Blackpoint D2 - Rev.0E DD30092021"
1-5997,SI20UMC5B90.25,"CONCRETE CONSTRUCTION BUILDING FOUNDATION 20UMC- Part3 NE Rebarfixing, grounding install, CJ prep. for baselslab",5121,"HK1003-Rev.0E-3",TT_Task,"55902",-,-,-,0,TK_NotStart,03/12/2021,,14/12/2021,,"SI20UMC5B90.24 FS","SI20UMC5B90.24","SI20UMC5B90.26 FS","SI20UMC5B90.26",69,,71,,16,,16,,40,112,"HK1003 -Blackpoint D2 - Rev.0E DD30092021"
1-5998,SI20UMC5B90.26,"CONCRETE CONSTRUCTION BUILDING FOUNDATION 20UMC- Part3 NE Concreting baseslab",5121,"HK1003-Rev.0E-3",TT_Task,"55902",-,-,-,0,TK_NotStart,15/12/2021,,15/12/2021,,"SI20UMC5B90.25 FS","SI20UMC5B90.25","SI20UMC5B45 FS","SI20UMC5B45",71,,71,,16,,16,,42,112,"HK1003 -Blackpoint D2 - Rev.0E DD30092021"
1-5999,SI20UMC5B75.09,"WORK PREPARATION FOUNDATION 20UMC- Part4 SE Excavation",5121,"HK1003-Rev.0E-3",TT_Task,"55902",-,-,-,0,TK_NotStart,25/10/2021,,02/11/2021,,"SI20UMC5B75.08 SS","SI20UMC5B75.08","SI20UMC5B75.10 FS","SI20UMC5B75.10",64,,65,,15,,15,,36,24,"HK1003 -Blackpoint D2 - Rev.0E DD30092021"
1-6000,SI20UMC5B75.11,"WORK PREPARATION FOUNDATION 20UMC- Part4 SE Pile trimming/Plate Welding/U-bar installation",5121,"HK1003-Rev.0E-3",TT_Task,"55902",-,-,-,0,TK_NotStart,06/11/2021,,17/11/2021,,"SI20UMC5B75.10 FS","SI20UMC5B75.10","SI20UMC5B90.27 FS,SI20UMC5B75 FF","SI20UMC5B90.27,SI20UMC5B75",66,,67,,15,,15,,37,24,"HK1003 -Blackpoint D2 - Rev.0E DD30092021"
1-6001,SI20UMC5B75.10,"WORK PREPARATION FOUNDATION 20UMC- Part4 SE Blinding",5121,"HK1003-Rev.0E-3",TT_Task,"55902",-,-,-,0,TK_NotStart,03/11/2021,,05/11/2021,,"SI20UMC5B75.09 FS","SI20UMC5B75.09","SI20UMC5B75.11 FS","SI20UMC5B75.11",65,,65,,15,,15,,37,24,"HK1003 -Blackpoint D2 - Rev.0E DD30092021"
1-6002,SI20UMC5B90.27,"CONCRETE CONSTRUCTION BUILDING FOUNDATION 20UMC- Part4 SE Formwork pile cap",5121,"HK1003-Rev.0E-3",TT_Task,"55902",-,-,-,0,TK_NotStart,18/11/2021,,26/11/2021,,"SI20UMC5B75.11 FS","SI20UMC5B75.11","SI20UMC5B90.28 FS,SI20UMC5B90.30 FS","SI20UMC5B90.28,SI20UMC5B90.30",67,,68,,15,,16,,39,24,"HK1003 -Blackpoint D2 - Rev.0E DD30092021"
1-6003,SI20UMC5B90.28,"CONCRETE CONSTRUCTION BUILDING FOUNDATION 20UMC- Part4 SE Rebarfixing, grounding install, CJ prep. for pile cap",5121,"HK1003-Rev.0E-3",TT_Task,"55902",-,-,-,0,TK_NotStart,27/11/2021,,08/12/2021,,"SI20UMC5B90.27 FS","SI20UMC5B90.27","SI20UMC5B90.29 FS","SI20UMC5B90.29",69,,70,,16,,16,,39,160,"HK1003 -Blackpoint D2 - Rev.0E DD30092021"
1-6004,SI20UMC5B90.29,"CONCRETE CONSTRUCTION BUILDING FOUNDATION 20UMC- Part4 SE Concrete pouring pile cap",5121,"HK1003-Rev.0E-3",TT_Task,"55902",-,-,-,0,TK_NotStart,09/12/2021,,09/12/2021,,"SI20UMC5B90.28 FS","SI20UMC5B90.28","SI20UMC5B45 FS","SI20UMC5B45",70,,70,,16,,16,,42,160,"HK1003 -Blackpoint D2 - Rev.0E DD30092021"
1-6005,SI20UMC5B90.30,"CONCRETE CONSTRUCTION BUILDING FOUNDATION 20UMC- Part4 SE Formwork for tie beam",5121,"HK1003-Rev.0E-3",TT_Task,"55902",-,-,-,0,TK_NotStart,27/11/2021,,05/12/2021,,"SI20UMC5B90.27 FS","SI20UMC5B90.27","SI20UMC5B90.31 FS,SI20UMC5B90.33 FS","SI20UMC5B90.31,SI20UMC5B90.33",69,,70,,16,,16,,39,24,"HK1003 -Blackpoint D2 - Rev.0E DD30092021"
1-6006,SI20UMC5B90.31,"CONCRETE CONSTRUCTION BUILDING FOUNDATION 20UMC- Part4 SE Rebarwork for tie beam",5121,"HK1003-Rev.0E-3",TT_Task,"55902",-,-,-,0,TK_NotStart,06/12/2021,,17/12/2021,,"SI20UMC5B90.30 FS","SI20UMC5B90.30","SI20UMC5B90.32 FS","SI20UMC5B90.32",70,,71,,16,,16,,41,88,"HK1003 -Blackpoint D2 - Rev.0E DD30092021"
1-6007,SI20UMC5B90.32,"CONCRETE CONSTRUCTION BUILDING FOUNDATION 20UMC- Part4 SE Concreting for tie beam",5121,"HK1003-Rev.0E-3",TT_Task,"55902",-,-,-,0,TK_NotStart,18/12/2021,,18/12/2021,,"SI20UMC5B90.31 FS","SI20UMC5B90.31","SI20UMC5B45 FS","SI20UMC5B45",72,,72,,16,,16,,43,88,"HK1003 -Blackpoint D2 - Rev.0E DD30092021"
1-6008,SI20UMC5B90.33,"CONCRETE CONSTRUCTION BUILDING FOUNDATION 20UMC- Part4 SE Formwork for baseslab",5121,"HK1003-Rev.0E-3",TT_Task,"55902",-,-,-,0,TK_NotStart,06/12/2021,,13/12/2021,,"SI20UMC5B90.30 FS","SI20UMC5B90.30","SI20UMC5B90.34 FS","SI20UMC5B90.34",70,,71,,16,,16,,41,24,"HK1003 -Blackpoint D2 - Rev.0E DD30092021"
1-6009,SI20UMC5B90.34,"CONCRETE CONSTRUCTION BUILDING FOUNDATION 20UMC- Part4 SE Rebarfixing, grounding install, CJ prep. for baselslab",5121,"HK1003-Rev.0E-3",TT_Task,"55902",-,-,-,0,TK_NotStart,14/12/2021,,25/12/2021,,"SI20UMC5B90.33 FS","SI20UMC5B90.33","SI20UMC5B90.35 FS","SI20UMC5B90.35",71,,73,,16,,17,,42,24,"HK1003 -Blackpoint D2 - Rev.0E DD30092021"
1-6010,SI20UMC5B90.35,"CONCRETE CONSTRUCTION BUILDING FOUNDATION 20UMC- Part4 SE Concreting baseslab",5121,"HK1003-Rev.0E-3",TT_Task,"55902",-,-,-,0,TK_NotStart,26/12/2021,,26/12/2021,,"SI20UMC5B90.34 FS","SI20UMC5B90.34","SI20UMC5B45 FS","SI20UMC5B45",73,,73,,17,,17,,43,24,"HK1003 -Blackpoint D2 - Rev.0E DD30092021"
1-6011,SI--UMC2A90,"BD -CONSENT LETTER TURBOSET DETAIL DESIGN CONCRETE 20UMC",5121,"HK1003-Rev.0E-3",TT_Task,"55902",-,-,-,94,TK_Active,31/08/2021,31/08/2021,01/10/2021,,"SI--UMC2A77 FF","SI--UMC2A77","SI20UMC2B71 FS","SI20UMC2B71",56,56,60,,13,13,14,,28,152,"HK1003 -Blackpoint D2 - Rev.0E DD30092021"
1-6012,SI20ULA5-05.00,"WORK PREPARATION, EXCAVATION 20ULA- Excavation pile cap stage1",5121,"HK1003-Rev.0E-3",TT_Task,"55902",-,-,-,0,TK_NotStart,01/10/2021,,09/10/2021,,"SI--ULA2-75 FS,SI--ULA2-80 FS","SI--ULA2-75,SI--ULA2-80","SI20ULA5-05.01 FS,SI20ULA5-05 SS","SI20ULA5-05.01,SI20ULA5-05",60,,62,,14,,14,,31,272,"HK1003 -Blackpoint D2 - Rev.0E DD30092021"
1-6013,SI20ULA5-05.01,"WORK PREPARATION, EXCAVATION 20ULA- Blinding  pile cap stage1",5121,"HK1003-Rev.0E-3",TT_Task,"55902",-,-,-,0,TK_NotStart,10/10/2021,,11/10/2021,,"SI20ULA5-05.00 FS","SI20ULA5-05.00","SI20ULA5-10 FS,SI20ULA5-05.1 FS,SI20ULA5-15.00 FS","SI20ULA5-10,SI20ULA5-05.1,SI20ULA5-15.00",62,,62,,14,,14,,33,272,"HK1003 -Blackpoint D2 - Rev.0E DD30092021"
1-6014,SI20ULA5-15.00,"CONSTRUCTION FOUNDATION 20ULA- Formwork for pile cap stage1",5121,"HK1003-Rev.0E-3",TT_Task,"55902",-,-,-,0,TK_NotStart,12/10/2021,,23/10/2021,,"SI20ULA5-05.01 FS,SI20ULA5-10 FS","SI20ULA5-05.01,SI20ULA5-10","SI20ULA5-15.01 FS,SI20ULA5-15 SS","SI20ULA5-15.01,SI20ULA5-15",62,,64,,14,,14,,33,272,"HK1003 -Blackpoint D2 - Rev.0E DD30092021"
1-6015,SI20ULA5-15.01,"CONSTRUCTION FOUNDATION 20ULA- Rebarfixing for pile cap stage1",5121,"HK1003-Rev.0E-3",TT_Task,"55902",-,-,-,0,TK_NotStart,24/10/2021,,07/11/2021,,"SI20ULA5-15.00 FS","SI20ULA5-15.00","SI20ULA5-15.02 FS","SI20ULA5-15.02",64,,66,,14,,15,,36,272,"HK1003 -Blackpoint D2 - Rev.0E DD30092021"
1-6016,SI20ULA5-15.02,"CONSTRUCTION FOUNDATION 20ULA- Concreting for pile cap stage1",5121,"HK1003-Rev.0E-3",TT_Task,"55902",-,-,-,0,TK_NotStart,08/11/2021,,09/11/2021,,"SI20ULA5-15.01 FS,SI--ULA2-81 FS","SI20ULA5-15.01,SI--ULA2-81","SI20ULA5-15.03 FS","SI20ULA5-15.03",66,,66,,15,,15,,37,272,"HK1003 -Blackpoint D2 - Rev.0E DD30092021"
1-6017,SI20ULA5-05.1,"WORK PREPARATION, EXCAVATION 20ULA- Blinding other area",5121,"HK1003-Rev.0E-3",TT_Task,"55902",-,-,-,0,TK_NotStart,12/10/2021,,14/10/2021,,"SI20ULA5-05.01 FS","SI20ULA5-05.01","SI20ULA5-15.03 FS,SI20ULA5-05 FF","SI20ULA5-15.03,SI20ULA5-05",62,,62,,14,,14,,33,480,"HK1003 -Blackpoint D2 - Rev.0E DD30092021"
1-6018,SI20ULA5-15.03,"CONSTRUCTION FOUNDATION 20ULA- Rebarfixing slab other area stage2",5121,"HK1003-Rev.0E-3",TT_Task,"55902",-,-,-,0,TK_NotStart,10/11/2021,,30/11/2021,,"SI20ULA5-05.1 FS,SI20ULA5-15.02 FS,SI20ULA5-05 FS","SI20ULA5-05.1,SI20ULA5-15.02,SI20ULA5-05","SI20ULA5-15.04 SS","SI20ULA5-15.04",66,,69,,15,,16,,38,272,"HK1003 -Blackpoint D2 - Rev.0E DD30092021"
1-6019,SI20ULA5-15.04,"CONSTRUCTION FOUNDATION 20ULA- Formwork slab other area stage2",5121,"HK1003-Rev.0E-3",TT_Task,"55902",-,-,-,0,TK_NotStart,17/11/2021,,01/12/2021,,"SI20ULA5-15.03 SS","SI20ULA5-15.03","SI20ULA5-15.05 FS","SI20ULA5-15.05",67,,69,,15,,16,,38,272,"HK1003 -Blackpoint D2 - Rev.0E DD30092021"
1-6020,SI20ULA5-15.05,"CONSTRUCTION FOUNDATION 20ULA- Concreting slab other area stage2",5121,"HK1003-Rev.0E-3",TT_Task,"55902",-,-,-,0,TK_NotStart,02/12/2021,,02/12/2021,,"SI20ULA5-15.04 FS","SI20ULA5-15.04","SI20ULA5-15.06 FS","SI20ULA5-15.06",69,,69,,16,,16,,40,272,"HK1003 -Blackpoint D2 - Rev.0E DD30092021"
1-6021,SI20ULA5-15.06,"CONSTRUCTION FOUNDATION 20ULA- Curing and Remove Formwork stage2",5121,"HK1003-Rev.0E-3",TT_Task,"55902",-,-,-,0,TK_NotStart,03/12/2021,,06/12/2021,,"SI20ULA5-15.05 FS","SI20ULA5-15.05","SI20ULA5-45 FS,SI20ULA5-15 FF","SI20ULA5-45,SI20ULA5-15",69,,70,,16,,16,,40,272,"HK1003 -Blackpoint D2 - Rev.0E DD30092021"
1-6022,SI20UBX2-83,"BASIC DESIGN STEEL STRUCTURE 20UBX",5121,"HK1003-Rev.0E-3",TT_Task,"55902",-,-,-,83,TK_Active,27/08/2021,27/08/2021,06/10/2021,,"","","SI20UBX2-55 FS,SI20UBL2C-81 FS","SI20UBX2-55,SI20UBL2C-81",55,55,61,,13,13,14,,27,600,"HK1003 -Blackpoint D2 - Rev.0E DD30092021"
1-6023,SP20MA-3-92,"MANUFACTURING ST LP OUTER CASING",5121,"HK1003-Rev.0E-3",TT_Task,"55902",-,-,-,21,TK_Active,13/08/2021,13/08/2021,01/04/2022,,"SP20MA-3-25 SS","SP20MA-3-25","SP20MA-3C81 FS,SP20MA-3-93 SS","SP20MA-3C81,SP20MA-3-93",53,53,86,,12,12,20,,25,120,"HK1003 -Blackpoint D2 - Rev.0E DD30092021"
1-6024,SI20MA-4-48,"(OTD-OS) ON SITE ST LP OUTER",5121,"HK1003-Rev.0E-3",TT_FinMile,"55902",-,-,-,0,TK_NotStart,30/12/2025,,30/12/2025,,"","","","",282,,282,,65,,65,,99,0,"HK1003 -Blackpoint D2 - Rev.0E DD30092021"
1-6025,SP20MA-3C82,"DELIVERY ST LP INNER CASING MA-",5121,"HK1003-Rev.0E-3",TT_FinMile,"55902",-,-,-,0,TK_NotStart,08/04/2022,,08/04/2022,,"SP20MA-3-93 FS","SP20MA-3-93","SP20MA-3-94 FS","SP20MA-3-94",87,,87,,20,,20,,57,640,"HK1003 -Blackpoint D2 - Rev.0E DD30092021"
1-6026,SP20MA-4C41,"TRANSPORT ST LP INNER CASING MA-",5121,"HK1003-Rev.0E-3",TT_Task,"55902",-,-,-,0,TK_NotStart,07/05/2022,,01/07/2022,,"SP20MA-3C83 FS","SP20MA-3C83","SP20MA-4C42 FS","SP20MA-4C42",92,,99,,21,,23,,63,640,"HK1003 -Blackpoint D2 - Rev.0E DD30092021"
1-6027,SP20MA-3C83,"(RFS) READY FOR SHIPMENT ST LP INNER CASING MA-",5121,"HK1003-Rev.0E-3",TT_FinMile,"55902",-,-,-,0,TK_NotStart,06/05/2022,,06/05/2022,,"SP20MA-4-14 FS","SP20MA-4-14","SP20MA-4C41 FS","SP20MA-4C41",91,,91,,21,,21,,63,640,"HK1003 -Blackpoint D2 - Rev.0E DD30092021"
1-6028,SP20MA-4-14,"LOGISTICS AND CUSTOMS PREPARATION ST LP INNER CASING MA-",5121,"HK1003-Rev.0E-3",TT_Task,"55902",-,-,-,0,TK_NotStart,09/04/2022,,06/05/2022,,"SP20MA-3-94 FS","SP20MA-3-94","SP20MA-3C83 FS","SP20MA-3C83",88,,91,,20,,21,,57,640,"HK1003 -Blackpoint D2 - Rev.0E DD30092021"
1-6029,SP20MA-3-94,"TIMES OF COMPLETION (FINAL DATA IN KANLOG) ST LP INNER CASING MA-",5121,"HK1003-Rev.0E-3",TT_FinMile,"55902",-,-,-,0,TK_NotStart,08/04/2022,,08/04/2022,,"SP20MA-3C82 FS","SP20MA-3C82","SP20MA-4-14 FS","SP20MA-4-14",87,,87,,20,,20,,57,640,"HK1003 -Blackpoint D2 - Rev.0E DD30092021"
1-6030,SP20MA-4C42,"(OTD-OS) ON SITE ST LP INNER CASING MA-",5121,"HK1003-Rev.0E-3",TT_FinMile,"55902",-,-,-,0,TK_NotStart,01/07/2022,,01/07/2022,,"SP20MA-4C41 FS","SP20MA-4C41","SI20MA-6B14 FS","SI20MA-6B14",99,,99,,23,,23,,72,640,"HK1003 -Blackpoint D2 - Rev.0E DD30092021"
1-6031,SP20MA-3-93,"MANUFACTURING ST LP INNER CASING",5121,"HK1003-Rev.0E-3",TT_Task,"55902",-,-,-,20,TK_Active,13/08/2021,13/08/2021,08/04/2022,,"SP20MA-3-92 SS","SP20MA-3-92","SP20MA-3C82 FS","SP20MA-3C82",53,53,87,,12,12,20,,25,640,"HK1003 -Blackpoint D2 - Rev.0E DD30092021"
1-6032,SP20MA-3-95,"MANUFACTURING ST ROTOR",5121,"HK1003-Rev.0E-3",TT_Task,"55902",-,-,-,6,TK_Active,17/09/2021,17/09/2021,06/05/2022,,"SP20MA-3-25 SS","SP20MA-3-25","SP20MA-3C84 FS","SP20MA-3C84",58,58,91,,13,13,21,,29,344,"HK1003 -Blackpoint D2 - Rev.0E DD30092021"
1-6033,SP20MA-3C84,"DELIVERY ST ROTOR",5121,"HK1003-Rev.0E-3",TT_FinMile,"55902",-,-,-,0,TK_NotStart,06/05/2022,,06/05/2022,,"SP20MA-3-95 FS","SP20MA-3-95","SP20MA-3-96 FS","SP20MA-3-96",91,,91,,21,,21,,63,344,"HK1003 -Blackpoint D2 - Rev.0E DD30092021"
1-6034,SP20MA-4C43,"TRANSPORT ST ROTOR",5121,"HK1003-Rev.0E-3",TT_Task,"55902",-,-,-,0,TK_NotStart,04/06/2022,,29/07/2022,,"SP20MA-3C85 FS","SP20MA-3C85","SP20MA-4C44 FS","SP20MA-4C44",96,,103,,22,,24,,68,344,"HK1003 -Blackpoint D2 - Rev.0E DD30092021"
1-6035,SP20MA-3C85,"(RFS) READY FOR SHIPMENT ST ROTOR",5121,"HK1003-Rev.0E-3",TT_FinMile,"55902",-,-,-,0,TK_NotStart,03/06/2022,,03/06/2022,,"SP20MA-4-15 FS","SP20MA-4-15","SP20MA-4C43 FS","SP20MA-4C43",95,,95,,22,,22,,68,344,"HK1003 -Blackpoint D2 - Rev.0E DD30092021"
1-6036,SP20MA-4-15,"LOGISTICS AND CUSTOMS PREPARATION ST ROTOR",5121,"HK1003-Rev.0E-3",TT_Task,"55902",-,-,-,0,TK_NotStart,07/05/2022,,03/06/2022,,"SP20MA-3-96 FS","SP20MA-3-96","SP20MA-3C85 FS","SP20MA-3C85",92,,95,,21,,22,,63,344,"HK1003 -Blackpoint D2 - Rev.0E DD30092021"
1-6037,SP20MA-3-96,"TIMES OF COMPLETION (FINAL DATA IN KANLOG) ST ROTOR",5121,"HK1003-Rev.0E-3",TT_FinMile,"55902",-,-,-,0,TK_NotStart,06/05/2022,,06/05/2022,,"SP20MA-3C84 FS","SP20MA-3C84","SP20MA-4-15 FS","SP20MA-4-15",91,,91,,21,,21,,63,344,"HK1003 -Blackpoint D2 - Rev.0E DD30092021"
1-6038,SP20MA-4C44,"(OTD-OS) ON SITE ST ROTOR",5121,"HK1003-Rev.0E-3",TT_FinMile,"55902",-,-,-,0,TK_NotStart,29/07/2022,,29/07/2022,,"SP20MA-4C43 FS","SP20MA-4C43","SI20MA-6C20 FS","SI20MA-6C20",103,,103,,24,,24,,76,344,"HK1003 -Blackpoint D2 - Rev.0E DD30092021"
1-6039,SI-UZA2-100.00,"SUBBASE RING ROAD INCL.  (U/G) DRAINAGE SYSTEM - PART 2B- Excavation /Stripping",5121,"HK1003-Rev.0E-3",TT_Task,"55902",-,-,-,0,TK_NotStart,06/01/2022,,04/02/2022,,"","","SI-UZA2-100.01 FS,SI-UZA2-100 SS","SI-UZA2-100.01,SI-UZA2-100",74,,78,,17,,18,,44,944,"HK1003 -Blackpoint D2 - Rev.0E DD30092021"
1-6040,SI-UZA2-100.01,"SUBBASE RING ROAD INCL.  (U/G) DRAINAGE SYSTEM - PART 2B-  Laying base course and compaction",5121,"HK1003-Rev.0E-3",TT_Task,"55902",-,-,-,0,TK_NotStart,05/02/2022,,22/02/2022,,"SI-UZA2-100.00 FS","SI-UZA2-100.00","SI-UZA2-100.02 FS","SI-UZA2-100.02",79,,81,,18,,19,,48,944,"HK1003 -Blackpoint D2 - Rev.0E DD30092021"
1-6041,SI-UZA2-100.02,"SUBBASE RING ROAD INCL.  (U/G) DRAINAGE SYSTEM - PART 2B-  Laying sub base and compaction",5121,"HK1003-Rev.0E-3",TT_Task,"55902",-,-,-,0,TK_NotStart,23/02/2022,,12/03/2022,,"SI-UZA2-100.01 FS","SI-UZA2-100.01","SI-UZA2-100.03 FS","SI-UZA2-100.03",81,,84,,19,,19,,50,944,"HK1003 -Blackpoint D2 - Rev.0E DD30092021"
1-6042,SI-UZA2-101.00,"SUBBASE RING ROAD INCL.  (U/G) DRAINAGE SYSTEM - PART 2C- Excavation /Stripping",5121,"HK1003-Rev.0E-3",TT_Task,"55902",-,-,-,0,TK_NotStart,15/01/2022,,13/02/2022,,"SI-UZA2-97.00 SS","SI-UZA2-97.00","SI-UZA2-101.01 FS,SI-UZA2-101 SS","SI-UZA2-101.01,SI-UZA2-101",76,,80,,17,,18,,45,984,"HK1003 -Blackpoint D2 - Rev.0E DD30092021"
1-6043,SI-UZA2-101.01,"SUBBASE RING ROAD INCL.  (U/G) DRAINAGE SYSTEM - PART 2C- Laying base course and compaction",5121,"HK1003-Rev.0E-3",TT_Task,"55902",-,-,-,0,TK_NotStart,14/02/2022,,05/03/2022,,"SI-UZA2-101.00 FS","SI-UZA2-101.00","SI-UZA2-101.02 FS","SI-UZA2-101.02",80,,83,,18,,19,,49,984,"HK1003 -Blackpoint D2 - Rev.0E DD30092021"
1-6044,SI-UZA2-101.02,"SUBBASE RING ROAD INCL.  (U/G) DRAINAGE SYSTEM - PART 2C- Sub Finishing",5121,"HK1003-Rev.0E-3",TT_Task,"55902",-,-,-,0,TK_NotStart,06/03/2022,,25/03/2022,,"SI-UZA2-101.01 FS","SI-UZA2-101.01","SI-UZA2-101 FF,SI-UZA2-90 FS","SI-UZA2-101,SI-UZA2-90",83,,85,,19,,20,,52,984,"HK1003 -Blackpoint D2 - Rev.0E DD30092021"
1-6045,SI-UZA2-100.03,"SUBBASE RING ROAD INCL.  (U/G) DRAINAGE SYSTEM - PART 2B-  Sub Finishing",5121,"HK1003-Rev.0E-3",TT_Task,"55902",-,-,-,0,TK_NotStart,13/03/2022,,30/03/2022,,"SI-UZA2-100.02 FS","SI-UZA2-100.02","SI-UZA2-100 FF,SI-UZA2-90 FS","SI-UZA2-100,SI-UZA2-90",84,,86,,19,,20,,52,944,"HK1003 -Blackpoint D2 - Rev.0E DD30092021"
1-6046,SI20UPY5P15.00,"CONSTRUCTION CONCRETE STRUCTURE 20UPY- Formworks",5121,"HK1003-Rev.0E-3",TT_Task,"55902",-,-,-,0,TK_NotStart,09/12/2021,,15/12/2021,,"SI20UPY5P10 FS","SI20UPY5P10","SI20UPY5P15.01 FS,SI20UPY5P15 SS","SI20UPY5P15.01,SI20UPY5P15",70,,71,,16,,16,,42,2184,"HK1003 -Blackpoint D2 - Rev.0E DD30092021"
1-6047,SI20UPY5P05.00,"WORK PREPARATION / EXCAVATION / PILE TRIMMING / PLATE WELDING 20UPY- Excavation",5121,"HK1003-Rev.0E-3",TT_Task,"55902",-,-,-,0,TK_NotStart,23/11/2021,,26/11/2021,,"SI20UMC5A25 SS,SI20UPY2-35 FS,SI20UPY2-36 FS","SI20UMC5A25,SI20UPY2-35,SI20UPY2-36","SI20UPY5P05.01 FS,SI20UPY5P05 SS","SI20UPY5P05.01,SI20UPY5P05",68,,68,,15,,16,,39,2184,"HK1003 -Blackpoint D2 - Rev.0E DD30092021"
1-6048,SI20UPY5P05.01,"WORK PREPARATION / EXCAVATION / PILE TRIMMING / PLATE WELDING 20UPY- Blinding",5121,"HK1003-Rev.0E-3",TT_Task,"55902",-,-,-,0,TK_NotStart,27/11/2021,,27/11/2021,,"SI20UPY5P05.00 FS","SI20UPY5P05.00","SI20UPY5P05.02 FS","SI20UPY5P05.02",69,,69,,16,,16,,39,2184,"HK1003 -Blackpoint D2 - Rev.0E DD30092021"
1-6049,SI20UPY5P05.02,"WORK PREPARATION / EXCAVATION / PILE TRIMMING / PLATE WELDING 20UPY- Pile Trimming",5121,"HK1003-Rev.0E-3",TT_Task,"55902",-,-,-,0,TK_NotStart,28/11/2021,,08/12/2021,,"SI20UPY5P05.01 FS","SI20UPY5P05.01","SI20UPY5P10 FS,SI20UPY5P05 FF","SI20UPY5P10,SI20UPY5P05",69,,70,,16,,16,,40,2184,"HK1003 -Blackpoint D2 - Rev.0E DD30092021"
1-6050,SI20UPY5P15.01,"CONSTRUCTION CONCRETE STRUCTURE 20UPY- Rebarworks and Grounding Installation",5121,"HK1003-Rev.0E-3",TT_Task,"55902",-,-,-,0,TK_NotStart,16/12/2021,,27/12/2021,,"SI20UPY5P15.00 FS","SI20UPY5P15.00","SI20UPY5P15.02 FS","SI20UPY5P15.02",71,,73,,16,,17,,42,2184,"HK1003 -Blackpoint D2 - Rev.0E DD30092021"
1-6051,SI20UPY5P15.02,"CONSTRUCTION CONCRETE STRUCTURE 20UPY- Concrete Pour",5121,"HK1003-Rev.0E-3",TT_Task,"55902",-,-,-,0,TK_NotStart,28/12/2021,,28/12/2021,,"SI20UPY5P15.01 FS","SI20UPY5P15.01","SI20UPY5P15.03 FS","SI20UPY5P15.03",73,,73,,17,,17,,43,2184,"HK1003 -Blackpoint D2 - Rev.0E DD30092021"
1-6052,SI20UPY5P15.03,"CONSTRUCTION CONCRETE STRUCTURE 20UPY- Curing and Remove formwork Pour",5121,"HK1003-Rev.0E-3",TT_Task,"55902",-,-,-,0,TK_NotStart,29/12/2021,,03/01/2022,,"SI20UPY5P15.02 FS","SI20UPY5P15.02","SI20UPY5P45 FS","SI20UPY5P45",73,,74,,17,,17,,43,2184,"HK1003 -Blackpoint D2 - Rev.0E DD30092021"
1-6053,SI20UTG5-70.01,"WORK PREPARATION, EXCAVATION 20UTG07- Blinding",5121,"HK1003-Rev.0E-3",TT_Task,"55902",-,-,-,0,TK_NotStart,16/04/2022,,16/04/2022,,"SI20UTG5-70.00 FS","SI20UTG5-70.00","SI20UTG5-74 FS","SI20UTG5-74",89,,89,,20,,20,,58,2120,"HK1003 -Blackpoint D2 - Rev.0E DD30092021"
1-6054,SI20UTG5-70.00,"WORK PREPARATION, EXCAVATION 20UTG07- Excavation",5121,"HK1003-Rev.0E-3",TT_Task,"55902",-,-,-,0,TK_NotStart,11/04/2022,,15/04/2022,,"SI-----5-22 FS,SI-----5-20 FS,SI-----5-21& FS,SI-P222-84 FS,SI20UMC5B15 FS,SI20UMC5B95 FS,SI20UTG2-48 FS,SI20UTG2-91 FS","SI-----5-22,SI-----5-20,SI-----5-21&,SI-P222-84,SI20UMC5B15,SI20UMC5B95,SI20UTG2-48,SI20UTG2-91","SI20UTG5-70.01 FS,SI20UTG5-70 SS","SI20UTG5-70.01,SI20UTG5-70",88,,88,,20,,20,,57,2120,"HK1003 -Blackpoint D2 - Rev.0E DD30092021"
1-6055,SI20UTG5-72.00,"CONSTRUCTION FOUNDATION 20UTG07- Formwork for baseslab",5121,"HK1003-Rev.0E-3",TT_Task,"55902",-,-,-,0,TK_NotStart,17/04/2022,,22/04/2022,,"SI20UTG5-74 FS","SI20UTG5-74","SI20UTG5-72.01 FS,SI20UTG5-72 SS","SI20UTG5-72.01,SI20UTG5-72",89,,89,,20,,20,,58,2120,"HK1003 -Blackpoint D2 - Rev.0E DD30092021"
1-6056,SI20UTG5-72.01,"CONSTRUCTION FOUNDATION 20UTG07- Rebarwork and grounding installation for baseslab",5121,"HK1003-Rev.0E-3",TT_Task,"55902",-,-,-,0,TK_NotStart,23/04/2022,,02/05/2022,,"SI20UTG5-72.00 FS","SI20UTG5-72.00","SI20UTG5-72.02 FS","SI20UTG5-72.02",90,,91,,21,,21,,59,2120,"HK1003 -Blackpoint D2 - Rev.0E DD30092021"
1-6057,SI20UTG5-72.02,"CONSTRUCTION FOUNDATION 20UTG07- Concreting for baseslab",5121,"HK1003-Rev.0E-3",TT_Task,"55902",-,-,-,0,TK_NotStart,03/05/2022,,03/05/2022,,"SI20UTG5-72.01 FS","SI20UTG5-72.01","SI20UTG5-72.03 FS","SI20UTG5-72.03",91,,91,,21,,21,,61,2120,"HK1003 -Blackpoint D2 - Rev.0E DD30092021"
1-6058,SI20UTG5-72.03,"CONSTRUCTION FOUNDATION 20UTG07- Curing and Remove formwors for baseslab",5121,"HK1003-Rev.0E-3",TT_Task,"55902",-,-,-,0,TK_NotStart,04/05/2022,,05/05/2022,,"SI20UTG5-72.02 FS","SI20UTG5-72.02","SI20UTG5-77.00 FS,SI20UTG5-72 FF","SI20UTG5-77.00,SI20UTG5-72",91,,91,,21,,21,,62,2120,"HK1003 -Blackpoint D2 - Rev.0E DD30092021"
1-6059,SI20UTG5-77.00,"CONSTRUCTION FOUNDATION 20UTG07- Formwork for wall stage1",5121,"HK1003-Rev.0E-3",TT_Task,"55902",-,-,-,0,TK_NotStart,06/05/2022,,11/05/2022,,"SI20UTG5-72.03 FS","SI20UTG5-72.03","SI20UTG5-77.01 FS,SI20UTG5-77 SS","SI20UTG5-77.01,SI20UTG5-77",91,,92,,21,,21,,63,2120,"HK1003 -Blackpoint D2 - Rev.0E DD30092021"
1-6060,SI20UTG5-77.01,"CONSTRUCTION FOUNDATION 20UTG07- Rebarwork for wall",5121,"HK1003-Rev.0E-3",TT_Task,"55902",-,-,-,0,TK_NotStart,12/05/2022,,21/05/2022,,"SI20UTG5-77.00 FS","SI20UTG5-77.00","SI20UTG5-77.02 FS","SI20UTG5-77.02",92,,94,,21,,21,,64,2120,"HK1003 -Blackpoint D2 - Rev.0E DD30092021"
1-6061,SI20UTG5-77.02,"CONSTRUCTION FOUNDATION 20UTG07- Formwork-closed for wall stage2",5121,"HK1003-Rev.0E-3",TT_Task,"55902",-,-,-,0,TK_NotStart,22/05/2022,,27/05/2022,,"SI20UTG5-77.01 FS","SI20UTG5-77.01","SI20UTG5-77.03 FS","SI20UTG5-77.03",94,,94,,21,,22,,66,2120,"HK1003 -Blackpoint D2 - Rev.0E DD30092021"
1-6062,SI20UTG5-77.03,"CONSTRUCTION FOUNDATION 20UTG07- Concreting for walls",5121,"HK1003-Rev.0E-3",TT_Task,"55902",-,-,-,0,TK_NotStart,28/05/2022,,28/05/2022,,"SI20UTG5-77.02 FS","SI20UTG5-77.02","SI20UTG5-77.04 FS","SI20UTG5-77.04",95,,95,,22,,22,,67,2120,"HK1003 -Blackpoint D2 - Rev.0E DD30092021"
1-6063,SI20UTG5-77.04,"CONSTRUCTION FOUNDATION 20UTG07- Curing and remove formwork for walls",5121,"HK1003-Rev.0E-3",TT_Task,"55902",-,-,-,0,TK_NotStart,29/05/2022,,31/05/2022,,"SI20UTG5-77.03 FS","SI20UTG5-77.03","SI20UTG5-76 FS,SI20UTG5-77 FF","SI20UTG5-76,SI20UTG5-77",95,,95,,22,,22,,67,2120,"HK1003 -Blackpoint D2 - Rev.0E DD30092021"
1-6064,SI20UEN5-05.00,"WORK PREPARATION, EXCAVATION 20UEN- Excavation",5121,"HK1003-Rev.0E-3",TT_Task,"55902",-,-,-,0,TK_NotStart,28/01/2022,,03/02/2022,,"SI-----5-20 FS,SI-----5-21& FS,SI-----5-22 FS,SI--UEN2A75 FS,SI-P222-62 FS,SI-P222-84 FS,SI20UEN2-107 FS","SI-----5-20,SI-----5-21&,SI-----5-22,SI--UEN2A75,SI-P222-62,SI-P222-84,SI20UEN2-107","SI20UEN5-05 SS,SI20UEN5-05.01 FS","SI20UEN5-05,SI20UEN5-05.01",77,,78,,18,,18,,47,16,"HK1003 -Blackpoint D2 - Rev.0E DD30092021"
1-6065,SI20UEN5-05.01,"WORK PREPARATION, EXCAVATION 20UEN- Blinding",5121,"HK1003-Rev.0E-3",TT_Task,"55902",-,-,-,0,TK_NotStart,04/02/2022,,11/02/2022,,"SI20UEN5-05.00 FS","SI20UEN5-05.00","SI20UEN5-05 FF,SI20UEN5-10 FS","SI20UEN5-05,SI20UEN5-10",78,,79,,18,,18,,48,16,"HK1003 -Blackpoint D2 - Rev.0E DD30092021"
1-6066,SI20UEN5-15.00,"CONSTRUCTION FOUNDATION 20UEN-Formwork for slab/foundation",5121,"HK1003-Rev.0E-3",TT_Task,"55902",-,-,-,0,TK_NotStart,12/02/2022,,01/03/2022,,"SI20UEN5-10 FS","SI20UEN5-10","SI20UEN5-15 SS,SI20UEN5-15.01 FS","SI20UEN5-15,SI20UEN5-15.01",80,,82,,18,,19,,49,16,"HK1003 -Blackpoint D2 - Rev.0E DD30092021"
1-6067,SI20UEN5-15.01,"CONSTRUCTION FOUNDATION 20UEN-Rebarwork. grounding installation, anchor bolt, cast-in",5121,"HK1003-Rev.0E-3",TT_Task,"55902",-,-,-,0,TK_NotStart,02/03/2022,,27/03/2022,,"SI20UEN5-15.00 FS","SI20UEN5-15.00","SI20UEN5-15.02 FS","SI20UEN5-15.02",82,,86,,19,,20,,51,16,"HK1003 -Blackpoint D2 - Rev.0E DD30092021"
1-6068,SI20UEN5-15.02,"CONSTRUCTION FOUNDATION 20UEN-Concreting slab/foundation",5121,"HK1003-Rev.0E-3",TT_Task,"55902",-,-,-,0,TK_NotStart,28/03/2022,,29/03/2022,,"SI20UEN5-15.01 FS","SI20UEN5-15.01","SI20UEN5-15.03 FS","SI20UEN5-15.03",86,,86,,20,,20,,54,16,"HK1003 -Blackpoint D2 - Rev.0E DD30092021"
1-6069,SI20UEN5-15.03,"CONSTRUCTION FOUNDATION 20UEN-Curing and formwork removal",5121,"HK1003-Rev.0E-3",TT_Task,"55902",-,-,-,0,TK_NotStart,30/03/2022,,07/04/2022,,"SI20UEN5-15.02 FS","SI20UEN5-15.02","SI20UEN5-45 FS","SI20UEN5-45",86,,87,,20,,20,,54,16,"HK1003 -Blackpoint D2 - Rev.0E DD30092021"
1-6070,SI20UBN5-5.00,"WORK PREPARATION, EXCAVATION 20UBN- Excavation",5121,"HK1003-Rev.0E-3",TT_Task,"55902",-,-,-,0,TK_NotStart,01/07/2022,,03/07/2022,,"SI20UBF5-15 SS,SI20UBN2-40 FS,SI-----5-22 FS,SI20UBZ5-68 FS,SI-----5-21& FS,SI-----5-20 FS,SI20UBA5-17 FS,SI20UBN2-110 FS,SI-P222-84 FS,SI20UBN2-111 FS","SI20UBF5-15,SI20UBN2-40,SI-----5-22,SI20UBZ5-68,SI-----5-21&,SI-----5-20,SI20UBA5-17,SI20UBN2-110,SI-P222-84,SI20UBN2-111","SI20UBN5-5.01 FS,SI20UBN5-5 SS","SI20UBN5-5.01,SI20UBN5-5",99,,100,,23,,23,,72,560,"HK1003 -Blackpoint D2 - Rev.0E DD30092021"
1-6071,SI20UBN5-5.01,"WORK PREPARATION, EXCAVATION 20UBN- Blinding",5121,"HK1003-Rev.0E-3",TT_Task,"55902",-,-,-,0,TK_NotStart,04/07/2022,,06/07/2022,,"SI20UBN5-5.00 FS","SI20UBN5-5.00","SI20UBN5-5 FF,SI20UBN5-15 FS","SI20UBN5-5,SI20UBN5-15",100,,100,,23,,23,,72,560,"HK1003 -Blackpoint D2 - Rev.0E DD30092021"
1-6072,SI20UBN5-10.00,"CONSTRUCTION FOUNDATION 20UBN- Formwork for baseslab/foundation",5121,"HK1003-Rev.0E-3",TT_Task,"55902",-,-,-,0,TK_NotStart,07/07/2022,,14/07/2022,,"SI20UBN5-15 FS","SI20UBN5-15","SI20UBN5-10.01 FS,SI20UBN5-10 SS","SI20UBN5-10.01,SI20UBN5-10",100,,101,,23,,23,,73,560,"HK1003 -Blackpoint D2 - Rev.0E DD30092021"
1-6073,SI20UBN5-10.01,"CONSTRUCTION FOUNDATION 20UBN- Rebarworks,grounding installation baseslab/foundation",5121,"HK1003-Rev.0E-3",TT_Task,"55902",-,-,-,0,TK_NotStart,15/07/2022,,04/08/2022,,"SI20UBN5-10.00 FS","SI20UBN5-10.00","SI20UBN5-10.02 FS","SI20UBN5-10.02",101,,104,,23,,24,,73,560,"HK1003 -Blackpoint D2 - Rev.0E DD30092021"
1-6074,SI20UBN5-10.02,"CONSTRUCTION FOUNDATION 20UBN- Concreting baseslab/foundation",5121,"HK1003-Rev.0E-3",TT_Task,"55902",-,-,-,0,TK_NotStart,05/08/2022,,06/08/2022,,"SI20UBN5-10.01 FS","SI20UBN5-10.01","SI20UBN5-10.03 FS","SI20UBN5-10.03",104,,105,,24,,24,,76,560,"HK1003 -Blackpoint D2 - Rev.0E DD30092021"
1-6075,SI20UBN5-10.03,"CONSTRUCTION FOUNDATION 20UBN- Curing,remove formwork,and backfill baseslab/foundation",5121,"HK1003-Rev.0E-3",TT_Task,"55902",-,-,-,0,TK_NotStart,07/08/2022,,11/08/2022,,"SI20UBN5-10.02 FS","SI20UBN5-10.02","SI20UBN5-20 FS,SI20UBN5-10 FF","SI20UBN5-20,SI20UBN5-10",105,,105,,24,,24,,77,560,"HK1003 -Blackpoint D2 - Rev.0E DD30092021"
1-6076,SI20UEN5-19.00,"WORK PREPARATION, EXCAVATION 01UEN- Excavation",5121,"HK1003-Rev.0E-3",TT_Task,"55902",-,-,-,0,TK_NotStart,20/01/2022,,31/01/2022,,"SI20UEN2-75 FS,SI-----5-22 FS,SI-----5-21& FS,SI-----5-20 FS,SI-P222-62 FS,SI-P222-84 FS,SI20UEN2-108 FS","SI20UEN2-75,SI-----5-22,SI-----5-21&,SI-----5-20,SI-P222-62,SI-P222-84,SI20UEN2-108","SI20UEN5-19.01 FS,SI20UEN5-19 SS","SI20UEN5-19.01,SI20UEN5-19",76,,78,,17,,18,,46,1248,"HK1003 -Blackpoint D2 - Rev.0E DD30092021"
1-6077,SI20UEN5-19.01,"WORK PREPARATION, EXCAVATION 01UEN- Blinding",5121,"HK1003-Rev.0E-3",TT_Task,"55902",-,-,-,0,TK_NotStart,01/02/2022,,02/02/2022,,"SI20UEN5-19.00 FS","SI20UEN5-19.00","SI20UEN5-21 FS,SI20UEN5-19 FF","SI20UEN5-21,SI20UEN5-19",78,,78,,18,,18,,47,1248,"HK1003 -Blackpoint D2 - Rev.0E DD30092021"
1-6078,SI20UEN5-17.00,"CONSTRUCTION FOUNDATION 01UEN- Formwork installation for baseslab/foundation",5121,"HK1003-Rev.0E-3",TT_Task,"55902",-,-,-,0,TK_NotStart,03/02/2022,,22/02/2022,,"SI20UEN5-21 FS","SI20UEN5-21","SI20UEN5-17 SS,SI20UEN5-17.01 FS","SI20UEN5-17,SI20UEN5-17.01",78,,81,,18,,19,,48,1248,"HK1003 -Blackpoint D2 - Rev.0E DD30092021"
1-6079,SI20UEN5-17.01,"CONSTRUCTION FOUNDATION 01UEN- Rebarwork,grounding install for baseslab/foundation",5121,"HK1003-Rev.0E-3",TT_Task,"55902",-,-,-,0,TK_NotStart,23/02/2022,,15/04/2022,,"SI20UEN5-17.00 FS","SI20UEN5-17.00","SI20UEN5-17.02 FS","SI20UEN5-17.02",81,,88,,19,,20,,50,1248,"HK1003 -Blackpoint D2 - Rev.0E DD30092021"
1-6080,SI20UEN5-17.02,"CONSTRUCTION FOUNDATION 01UEN- Concreting baseslab/foundation",5121,"HK1003-Rev.0E-3",TT_Task,"55902",-,-,-,0,TK_NotStart,16/04/2022,,22/04/2022,,"SI20UEN5-17.01 FS","SI20UEN5-17.01","SI20UEN5-17.03 FS","SI20UEN5-17.03",89,,89,,20,,20,,58,1248,"HK1003 -Blackpoint D2 - Rev.0E DD30092021"
1-6081,SI20UEN5-17.03,"CONSTRUCTION FOUNDATION 01UEN- Curing,removal formwork,backfill baseslab/foundation",5121,"HK1003-Rev.0E-3",TT_Task,"55902",-,-,-,0,TK_NotStart,23/04/2022,,04/05/2022,,"SI20UEN5-17.02 FS","SI20UEN5-17.02","SI20UEN5-23 FS,SI20UEN5-17 FF,SI20UEN5-61# FF","SI20UEN5-23,SI20UEN5-17,SI20UEN5-61#",90,,91,,21,,21,,59,1248,"HK1003 -Blackpoint D2 - Rev.0E DD30092021"
1-6082,SI20USX5-15.01,"CONSTRUCTION FOUNDATION 20USX- Rebarworks for baseslab/foundation",5121,"HK1003-Rev.0E-3",TT_Task,"55902",-,-,-,0,TK_NotStart,22/07/2022,,30/07/2022,,"SI20USX5-15.00 FS","SI20USX5-15.00","SI20USX5-15.02 FS","SI20USX5-15.02",102,,104,,24,,24,,74,1632,"HK1003 -Blackpoint D2 - Rev.0E DD30092021"
1-6083,SI20USX5-15.00,"CONSTRUCTION FOUNDATION 20USX- Formwork installation for baseslab/foundation",5121,"HK1003-Rev.0E-3",TT_Task,"55902",-,-,-,0,TK_NotStart,16/07/2022,,21/07/2022,,"SI20USX5-20 FS","SI20USX5-20","SI20USX5-15.01 FS","SI20USX5-15.01",102,,102,,23,,23,,74,1632,"HK1003 -Blackpoint D2 - Rev.0E DD30092021"
1-6084,SI20USX5-15.02,"CONSTRUCTION FOUNDATION 20USX- Concreting for baseslab/foundation",5121,"HK1003-Rev.0E-3",TT_Task,"55902",-,-,-,0,TK_NotStart,31/07/2022,,31/07/2022,,"SI20USX5-15.01 FS","SI20USX5-15.01","SI20USX5-15.03 FS","SI20USX5-15.03",104,,104,,24,,24,,76,1632,"HK1003 -Blackpoint D2 - Rev.0E DD30092021"
1-6085,SI20USX5-15.03,"CONSTRUCTION FOUNDATION 20USX- Curing, removal formwork, backfill baseslab/foundation",5121,"HK1003-Rev.0E-3",TT_Task,"55902",-,-,-,0,TK_NotStart,01/08/2022,,06/08/2022,,"SI20USX5-15.02 FS","SI20USX5-15.02","SI20USX5-25 FS","SI20USX5-25",104,,105,,24,,24,,76,1632,"HK1003 -Blackpoint D2 - Rev.0E DD30092021"
1-6086,SI20UBA5-55.01,"CONSTRUCTION FOUNDATION  20UBA1110/20-Rebarwork,grounding, Anchor bolt for base slab/foundation",5121,"HK1003-Rev.0E-3",TT_Task,"55902",-,-,-,0,TK_NotStart,03/01/2022,,20/01/2022,,"SI20UBA5-55.00 FS","SI20UBA5-55.00","SI20UBA5-55.02 FS","SI20UBA5-55.02",74,,76,,17,,17,,44,2568,"HK1003 -Blackpoint D2 - Rev.0E DD30092021"
1-6087,SI20UBA5-55.00,"CONSTRUCTION FOUNDATION  20UBA1110/20-Formwork installation for base slab/foundation",5121,"HK1003-Rev.0E-3",TT_Task,"55902",-,-,-,0,TK_NotStart,23/12/2021,,02/01/2022,,"SI20UBA5-50 FS","SI20UBA5-50","SI20UBA5-55.01 FS,SI20UBA5-55 SS","SI20UBA5-55.01,SI20UBA5-55",72,,74,,16,,17,,43,256,"HK1003 -Blackpoint D2 - Rev.0E DD30092021"
1-6088,SI20UBA5-55.02,"CONSTRUCTION FOUNDATION  20UBA1110/20-Concreting for base slab/foundation",5121,"HK1003-Rev.0E-3",TT_Task,"55902",-,-,-,0,TK_NotStart,21/01/2022,,21/01/2022,,"SI20UBA5-55.01 FS","SI20UBA5-55.01","SI20UBA5-55.03 FS","SI20UBA5-55.03",76,,76,,17,,17,,46,2568,"HK1003 -Blackpoint D2 - Rev.0E DD30092021"
1-6089,SI20UBA5-55.03,"CONSTRUCTION FOUNDATION  20UBA1110/20-Curing,formwork removal, backfill slab/foundation",5121,"HK1003-Rev.0E-3",TT_Task,"55902",-,-,-,0,TK_NotStart,22/01/2022,,27/01/2022,,"SI20UBA5-55.02 FS","SI20UBA5-55.02","SI20UBA5-60 FS,SI20UBA5-82 FS","SI20UBA5-60,SI20UBA5-82",77,,77,,17,,18,,46,2568,"HK1003 -Blackpoint D2 - Rev.0E DD30092021"
1-6090,SI20UTG5-44.01,"CONSTRUCTION FOUNDATION 20UTG04-Rebarwork for baseslab/foundation",5121,"HK1003-Rev.0E-3",TT_Task,"55902",-,-,-,0,TK_NotStart,30/01/2022,,08/02/2022,,"SI20UTG5-44.00 FS","SI20UTG5-44.00","SI20UTG5-44.02 FS","SI20UTG5-44.02",78,,79,,18,,18,,47,3328,"HK1003 -Blackpoint D2 - Rev.0E DD30092021"
1-6091,SI20UTG5-44.00,"CONSTRUCTION FOUNDATION 20UTG04-Formwork instalation for baseslab/foundation",5121,"HK1003-Rev.0E-3",TT_Task,"55902",-,-,-,0,TK_NotStart,24/01/2022,,29/01/2022,,"SI20UTG5-42 FS","SI20UTG5-42","SI20UTG5-44.01 FS","SI20UTG5-44.01",77,,78,,18,,18,,46,3328,"HK1003 -Blackpoint D2 - Rev.0E DD30092021"
1-6092,SI20UTG5-44.02,"CONSTRUCTION FOUNDATION 20UTG04-Concreting for baseslab/foundation",5121,"HK1003-Rev.0E-3",TT_Task,"55902",-,-,-,0,TK_NotStart,09/02/2022,,09/02/2022,,"SI20UTG5-44.01 FS","SI20UTG5-44.01","SI20UTG5-44.03 FS","SI20UTG5-44.03",79,,79,,18,,18,,49,3328,"HK1003 -Blackpoint D2 - Rev.0E DD30092021"
1-6093,SI20UTG5-44.03,"CONSTRUCTION FOUNDATION 20UTG04-Curing,removal formwork,backfill for baseslab/foundation",5121,"HK1003-Rev.0E-3",TT_Task,"55902",-,-,-,0,TK_NotStart,10/02/2022,,13/02/2022,,"SI20UTG5-44.02 FS","SI20UTG5-44.02","SI20UTG5-46 FS","SI20UTG5-46",79,,80,,18,,18,,49,3328,"HK1003 -Blackpoint D2 - Rev.0E DD30092021"
1-6094,SI20UBH5-22.00,"CONSTRUCTION OIL COLLECTION PIT / OIL SEPARATOR 20UBH01-Rebarwork and grounding install baseslab(1st pour)",5121,"HK1003-Rev.0E-3",TT_Task,"55902",-,-,-,0,TK_NotStart,10/02/2022,,21/02/2022,,"SI20UBH5-10 FS","SI20UBH5-10","SI20UBH5-22.01 FS,SI20UBH5-22 SS","SI20UBH5-22.01,SI20UBH5-22",79,,81,,18,,18,,49,1496,"HK1003 -Blackpoint D2 - Rev.0E DD30092021"
1-6095,SI20UBH5-22.01,"CONSTRUCTION OIL COLLECTION PIT / OIL SEPARATOR 20UBH01-Concreting of baseslab",5121,"HK1003-Rev.0E-3",TT_Task,"55902",-,-,-,0,TK_NotStart,22/02/2022,,22/02/2022,,"SI20UBH5-22.00 FS","SI20UBH5-22.00","SI20UBH5-22.02 FS","SI20UBH5-22.02",81,,81,,19,,19,,50,1496,"HK1003 -Blackpoint D2 - Rev.0E DD30092021"
1-6096,SI20UBH5-22.02,"CONSTRUCTION OIL COLLECTION PIT / OIL SEPARATOR 20UBH01-Inner formwork erection for walls & Top slab(2nd pour)",5121,"HK1003-Rev.0E-3",TT_Task,"55902",-,-,-,0,TK_NotStart,23/02/2022,,03/03/2022,,"SI20UBH5-22.01 FS","SI20UBH5-22.01","SI20UBH5-22.03 FS","SI20UBH5-22.03",81,,82,,19,,19,,50,1496,"HK1003 -Blackpoint D2 - Rev.0E DD30092021"
1-6097,SI20UBH5-22.03,"CONSTRUCTION OIL COLLECTION PIT / OIL SEPARATOR 20UBH01-Rebarwork for walls & Top slab(2nd pour)",5121,"HK1003-Rev.0E-3",TT_Task,"55902",-,-,-,0,TK_NotStart,04/03/2022,,12/03/2022,,"SI20UBH5-22.02 FS","SI20UBH5-22.02","SI20UBH5-22.04 FS","SI20UBH5-22.04",82,,84,,19,,19,,52,1496,"HK1003 -Blackpoint D2 - Rev.0E DD30092021"
1-6098,SI20UBH5-22.04,"CONSTRUCTION OIL COLLECTION PIT / OIL SEPARATOR 20UBH01-Close formwork for walls (2nd pour)",5121,"HK1003-Rev.0E-3",TT_Task,"55902",-,-,-,0,TK_NotStart,13/03/2022,,20/03/2022,,"SI20UBH5-22.03 FS","SI20UBH5-22.03","SI20UBH5-22.05 FS","SI20UBH5-22.05",84,,85,,19,,19,,52,1496,"HK1003 -Blackpoint D2 - Rev.0E DD30092021"
1-6099,SI20UBH5-22.05,"CONSTRUCTION OIL COLLECTION PIT / OIL SEPARATOR 20UBH01-Concreting for walls & top slab (2nd pour)",5121,"HK1003-Rev.0E-3",TT_Task,"55902",-,-,-,0,TK_NotStart,21/03/2022,,22/03/2022,,"SI20UBH5-22.04 FS","SI20UBH5-22.04","SI20UBH5-22.06 FS","SI20UBH5-22.06",85,,85,,19,,19,,53,1496,"HK1003 -Blackpoint D2 - Rev.0E DD30092021"
1-6100,SI20UBH5-22.06,"CONSTRUCTION OIL COLLECTION PIT / OIL SEPARATOR 20UBH01-Curing and desmantle formwork",5121,"HK1003-Rev.0E-3",TT_Task,"55902",-,-,-,0,TK_NotStart,23/03/2022,,28/03/2022,,"SI20UBH5-22.05 FS","SI20UBH5-22.05","SI20UBH5-22.07 FS","SI20UBH5-22.07",85,,86,,19,,20,,53,1496,"HK1003 -Blackpoint D2 - Rev.0E DD30092021"
1-6101,SI20UBH5-22.07,"CONSTRUCTION OIL COLLECTION PIT / OIL SEPARATOR 20UBH01-Backfill around structure",5121,"HK1003-Rev.0E-3",TT_Task,"55902",-,-,-,0,TK_NotStart,29/03/2022,,01/04/2022,,"SI20UBH5-22.06 FS","SI20UBH5-22.06","SI20UBH5E48 FS","SI20UBH5E48",86,,86,,20,,20,,54,1496,"HK1003 -Blackpoint D2 - Rev.0E DD30092021"
1-6102,SI20UHX5-10.00,"CONSTRUCTION FOUNDATION 20UHX-Formwork installation for baseslab/foundation",5121,"HK1003-Rev.0E-3",TT_Task,"55902",-,-,-,0,TK_NotStart,03/02/2022,,08/02/2022,,"SI20UHX5-10 FS","SI20UHX5-10","SI20UHX5-10.01 FS","SI20UHX5-10.01",78,,79,,18,,18,,48,3056,"HK1003 -Blackpoint D2 - Rev.0E DD30092021"
1-6103,SI20UHX5-10.01,"CONSTRUCTION FOUNDATION 20UHX-Rebarwork for baseslab/foundation",5121,"HK1003-Rev.0E-3",TT_Task,"55902",-,-,-,0,TK_NotStart,09/02/2022,,18/02/2022,,"SI20UHX5-10.00 FS","SI20UHX5-10.00","SI20UHX5-10.02 FS","SI20UHX5-10.02",79,,80,,18,,18,,49,3056,"HK1003 -Blackpoint D2 - Rev.0E DD30092021"
1-6104,SI20UHX5-10.02,"CONSTRUCTION FOUNDATION 20UHX-Concreting for baseslab/foundation",5121,"HK1003-Rev.0E-3",TT_Task,"55902",-,-,-,0,TK_NotStart,19/02/2022,,19/02/2022,,"SI20UHX5-10.01 FS","SI20UHX5-10.01","SI20UHX5-10.03 FS","SI20UHX5-10.03",81,,81,,18,,18,,50,3056,"HK1003 -Blackpoint D2 - Rev.0E DD30092021"
1-6105,SI20UHX5-10.03,"CONSTRUCTION FOUNDATION 20UHX-Curing, removal formwork,Backfill",5121,"HK1003-Rev.0E-3",TT_Task,"55902",-,-,-,0,TK_NotStart,20/02/2022,,22/02/2022,,"SI20UHX5-10.02 FS","SI20UHX5-10.02","SI20UHX5-45 FS","SI20UHX5-45",81,,81,,18,,19,,50,3056,"HK1003 -Blackpoint D2 - Rev.0E DD30092021"
1-6106,SI20UVM5-16.00,"CONSTRUCTION FOUNDATION 20UVM01-Rebarwork for baseslab(1st pour)",5121,"HK1003-Rev.0E-3",TT_Task,"55902",-,-,-,0,TK_NotStart,12/05/2022,,19/05/2022,,"SI20UVM5-11 FS","SI20UVM5-11","SI20UVM5-16.01 FS","SI20UVM5-16.01",92,,93,,21,,21,,64,848,"HK1003 -Blackpoint D2 - Rev.0E DD30092021"
1-6107,SI20UVM5-16.01,"CONSTRUCTION FOUNDATION 20UVM01-Concreting for baseslab(1st pour)",5121,"HK1003-Rev.0E-3",TT_Task,"55902",-,-,-,0,TK_NotStart,20/05/2022,,20/05/2022,,"SI20UVM5-16.00 FS","SI20UVM5-16.00","SI20UVM5-16.02 FS","SI20UVM5-16.02",93,,93,,21,,21,,66,848,"HK1003 -Blackpoint D2 - Rev.0E DD30092021"
1-6108,SI20UVM5-16.02,"CONSTRUCTION FOUNDATION 20UVM01-Inner formwork for baseslab(2nd pour)",5121,"HK1003-Rev.0E-3",TT_Task,"55902",-,-,-,0,TK_NotStart,21/05/2022,,26/05/2022,,"SI20UVM5-16.01 FS","SI20UVM5-16.01","SI20UVM5-16.03 SS","SI20UVM5-16.03",94,,94,,21,,22,,66,848,"HK1003 -Blackpoint D2 - Rev.0E DD30092021"
1-6109,SI20UVM5-16.03,"CONSTRUCTION FOUNDATION 20UVM01-Rebarwork for wall & top slab(2nd pour)",5121,"HK1003-Rev.0E-3",TT_Task,"55902",-,-,-,0,TK_NotStart,25/05/2022,,01/06/2022,,"SI20UVM5-16.02 SS","SI20UVM5-16.02","SI20UVM5-16.04 FS","SI20UVM5-16.04",94,,95,,22,,22,,66,848,"HK1003 -Blackpoint D2 - Rev.0E DD30092021"
1-6110,SI20UVM5-16.04,"CONSTRUCTION FOUNDATION 20UVM01-Close formwork for wall(2nd pour)",5121,"HK1003-Rev.0E-3",TT_Task,"55902",-,-,-,0,TK_NotStart,02/06/2022,,07/06/2022,,"SI20UVM5-16.03 FS","SI20UVM5-16.03","SI20UVM5-16.05 FS","SI20UVM5-16.05",95,,96,,22,,22,,68,848,"HK1003 -Blackpoint D2 - Rev.0E DD30092021"
1-6111,SI20UVM5-16.05,"CONSTRUCTION FOUNDATION 20UVM01-Concreting for wall & top slab(2nd pour)",5121,"HK1003-Rev.0E-3",TT_Task,"55902",-,-,-,0,TK_NotStart,08/06/2022,,08/06/2022,,"SI20UVM5-16.04 FS","SI20UVM5-16.04","SI20UVM5-16.06 FS","SI20UVM5-16.06",96,,96,,22,,22,,69,848,"HK1003 -Blackpoint D2 - Rev.0E DD30092021"
1-6112,SI20UVM5-16.06,"CONSTRUCTION FOUNDATION 20UVM01-Curing,desmantling formwork",5121,"HK1003-Rev.0E-3",TT_Task,"55902",-,-,-,0,TK_NotStart,09/06/2022,,12/06/2022,,"SI20UVM5-16.05 FS","SI20UVM5-16.05","SI20UVM5-16.07 FS","SI20UVM5-16.07",96,,97,,22,,22,,69,848,"HK1003 -Blackpoint D2 - Rev.0E DD30092021"
1-6113,SI20UVM5-16.07,"CONSTRUCTION FOUNDATION 20UVM01-Backfilling around structure",5121,"HK1003-Rev.0E-3",TT_Task,"55902",-,-,-,0,TK_NotStart,13/06/2022,,16/06/2022,,"SI20UVM5-16.06 FS","SI20UVM5-16.06","SI20UVM5-45 FS","SI20UVM5-45",97,,97,,22,,22,,69,848,"HK1003 -Blackpoint D2 - Rev.0E DD30092021"
1-6114,SI20UBA5-17.00,"CONSTRUCTION FOUNDATION  20UBA7xxx-Formwork at sump pit",5121,"HK1003-Rev.0E-3",TT_Task,"55902",-,-,-,0,TK_NotStart,04/03/2022,,08/03/2022,,"SI20UBA5-17.0 FS","SI20UBA5-17.0","SI20UBA5-17.01 FS","SI20UBA5-17.01",82,,83,,19,,19,,52,2624,"HK1003 -Blackpoint D2 - Rev.0E DD30092021"
1-6115,SI20UBA5-17.0,"CONSTRUCTION FOUNDATION  20UBA7xxx-Rebarwork at sump pit",5121,"HK1003-Rev.0E-3",TT_Task,"55902",-,-,-,0,TK_NotStart,26/02/2022,,03/03/2022,,"SI20UBA5-17 SS","SI20UBA5-17","SI20UBA5-17.00 FS","SI20UBA5-17.00",82,,82,,19,,19,,51,2624,"HK1003 -Blackpoint D2 - Rev.0E DD30092021"
1-6116,SI20UBA5-17.01,"CONSTRUCTION FOUNDATION  20UBA7xxx-Concreting at sump pit",5121,"HK1003-Rev.0E-3",TT_Task,"55902",-,-,-,0,TK_NotStart,09/03/2022,,09/03/2022,,"SI20UBA5-17.00 FS","SI20UBA5-17.00","SI20UBA5-17.02 FS","SI20UBA5-17.02",83,,83,,19,,19,,52,2624,"HK1003 -Blackpoint D2 - Rev.0E DD30092021"
1-6117,SI20UBA5-17.02,"CONSTRUCTION FOUNDATION  20UBA7xxx-Rebarwork and grounding installation for baseslab",5121,"HK1003-Rev.0E-3",TT_Task,"55902",-,-,-,0,TK_NotStart,10/03/2022,,19/03/2022,,"SI20UBA5-17.01 FS","SI20UBA5-17.01","SI20UBA5-17.03 FS","SI20UBA5-17.03",83,,85,,19,,19,,52,2624,"HK1003 -Blackpoint D2 - Rev.0E DD30092021"
1-6118,SI20UBA5-17.03,"CONSTRUCTION FOUNDATION  20UBA7xxx-Formwork install for baseslab",5121,"HK1003-Rev.0E-3",TT_Task,"55902",-,-,-,0,TK_NotStart,20/03/2022,,25/03/2022,,"SI20UBA5-17.02 FS","SI20UBA5-17.02","SI20UBA5-17.04 FS","SI20UBA5-17.04",85,,85,,19,,20,,53,2624,"HK1003 -Blackpoint D2 - Rev.0E DD30092021"
1-6119,SI20UBA5-17.04,"CONSTRUCTION FOUNDATION  20UBA7xxx-Concreting for baseslab",5121,"HK1003-Rev.0E-3",TT_Task,"55902",-,-,-,0,TK_NotStart,26/03/2022,,27/03/2022,,"SI20UBA5-17.03 FS","SI20UBA5-17.03","SI20UBA5-17.05 FS","SI20UBA5-17.05",86,,86,,20,,20,,54,2624,"HK1003 -Blackpoint D2 - Rev.0E DD30092021"
1-6120,SI20UBA5-17.05,"CONSTRUCTION FOUNDATION  20UBA7xxx-Formwork  for walls(one side)",5121,"HK1003-Rev.0E-3",TT_Task,"55902",-,-,-,0,TK_NotStart,28/03/2022,,08/04/2022,,"SI20UBA5-17.04 FS","SI20UBA5-17.04","SI20UBA5-17.06 FS","SI20UBA5-17.06",86,,87,,20,,20,,54,2624,"HK1003 -Blackpoint D2 - Rev.0E DD30092021"
1-6121,SI20UBA5-17.06,"CONSTRUCTION FOUNDATION  20UBA7xxx-Rebarworks for walls",5121,"HK1003-Rev.0E-3",TT_Task,"55902",-,-,-,0,TK_NotStart,09/04/2022,,23/04/2022,,"SI20UBA5-17.05 FS","SI20UBA5-17.05","SI20UBA5-17.07 FS","SI20UBA5-17.07",88,,90,,20,,21,,57,2624,"HK1003 -Blackpoint D2 - Rev.0E DD30092021"
1-6122,SI20UBA5-17.07,"CONSTRUCTION FOUNDATION  20UBA7xxx-Formwork  for walls(close)",5121,"HK1003-Rev.0E-3",TT_Task,"55902",-,-,-,0,TK_NotStart,24/04/2022,,05/05/2022,,"SI20UBA5-17.06 FS","SI20UBA5-17.06","SI20UBA5-17.08 FS","SI20UBA5-17.08",90,,91,,21,,21,,59,2624,"HK1003 -Blackpoint D2 - Rev.0E DD30092021"
1-6123,SI20UBA5-17.08,"CONSTRUCTION FOUNDATION  20UBA7xxx-Concreting for walls",5121,"HK1003-Rev.0E-3",TT_Task,"55902",-,-,-,0,TK_NotStart,06/05/2022,,07/05/2022,,"SI20UBA5-17.07 FS","SI20UBA5-17.07","SI20UBA5-17.09 FS","SI20UBA5-17.09",91,,92,,21,,21,,63,2624,"HK1003 -Blackpoint D2 - Rev.0E DD30092021"
1-6124,SI20UBA5-17.09,"CONSTRUCTION FOUNDATION  20UBA7xxx-Curing & desmantling",5121,"HK1003-Rev.0E-3",TT_Task,"55902",-,-,-,0,TK_NotStart,08/05/2022,,12/05/2022,,"SI20UBA5-17.08 FS","SI20UBA5-17.08","SI20UBA5-47 FS","SI20UBA5-47",92,,92,,21,,21,,64,2624,"HK1003 -Blackpoint D2 - Rev.0E DD30092021"
1-6125,SI20UTG5-78,"CONSTRUCTION FOUNDATION 20UTG01",5121,"HK1003-Rev.0E-3",TT_Task,"55902",-,-,-,0,TK_NotStart,30/09/2021,,13/10/2021,,"","","","",60,,62,,14,,14,,30,12312,"HK1003 -Blackpoint D2 - Rev.0E DD30092021"
1-6126,SI20UBA5-15.00,"CONSTRUCTION FOUNDATION 20UBA7910/20- Formworks erection for sump pit",5121,"HK1003-Rev.0E-3",TT_Task,"55902",-,-,-,0,TK_NotStart,05/05/2022,,08/05/2022,,"SI20UBA5-15.0 FS","SI20UBA5-15.0","SI20UBA5-15.01 FS","SI20UBA5-15.01",91,,92,,21,,21,,63,1048,"HK1003 -Blackpoint D2 - Rev.0E DD30092021"
1-6127,SI20UBA5-15.0,"CONSTRUCTION FOUNDATION 20UBA7910/20- Rebarworks for sump pit",5121,"HK1003-Rev.0E-3",TT_Task,"55902",-,-,-,0,TK_NotStart,30/04/2022,,04/05/2022,,"SI20UBA5-10 FS","SI20UBA5-10","SI20UBA5-15.00 FS","SI20UBA5-15.00",91,,91,,21,,21,,60,1048,"HK1003 -Blackpoint D2 - Rev.0E DD30092021"
1-6128,SI20UBA5-15.01,"CONSTRUCTION FOUNDATION 20UBA7910/20- Concreting for sump pit",5121,"HK1003-Rev.0E-3",TT_Task,"55902",-,-,-,0,TK_NotStart,09/05/2022,,09/05/2022,,"SI20UBA5-15.00 FS","SI20UBA5-15.00","SI20UBA5-15.02 FS","SI20UBA5-15.02",92,,92,,21,,21,,64,1048,"HK1003 -Blackpoint D2 - Rev.0E DD30092021"
1-6129,SI20UBA5-15.02,"CONSTRUCTION FOUNDATION 20UBA7910/20- Rebarwork for slab",5121,"HK1003-Rev.0E-3",TT_Task,"55902",-,-,-,0,TK_NotStart,10/05/2022,,16/05/2022,,"SI20UBA5-15.01 FS","SI20UBA5-15.01","SI20UBA5-15.03 FS","SI20UBA5-15.03",92,,93,,21,,21,,64,1048,"HK1003 -Blackpoint D2 - Rev.0E DD30092021"
1-6130,SI20UBA5-15.03,"CONSTRUCTION FOUNDATION 20UBA7910/20- Formwork for slab",5121,"HK1003-Rev.0E-3",TT_Task,"55902",-,-,-,0,TK_NotStart,17/05/2022,,21/05/2022,,"SI20UBA5-15.02 FS","SI20UBA5-15.02","SI20UBA5-15.04 FS","SI20UBA5-15.04",93,,94,,21,,21,,65,1048,"HK1003 -Blackpoint D2 - Rev.0E DD30092021"
1-6131,SI20UBA5-15.04,"CONSTRUCTION FOUNDATION 20UBA7910/20- Concreting for slab",5121,"HK1003-Rev.0E-3",TT_Task,"55902",-,-,-,0,TK_NotStart,22/05/2022,,22/05/2022,,"SI20UBA5-15.03 FS","SI20UBA5-15.03","SI20UBA5-15.05 FS","SI20UBA5-15.05",94,,94,,21,,21,,66,1048,"HK1003 -Blackpoint D2 - Rev.0E DD30092021"
1-6132,SI20UBA5-15.05,"CONSTRUCTION FOUNDATION 20UBA7910/20- Formwork for walls(One side)",5121,"HK1003-Rev.0E-3",TT_Task,"55902",-,-,-,0,TK_NotStart,23/05/2022,,28/05/2022,,"SI20UBA5-15.04 FS","SI20UBA5-15.04","SI20UBA5-15.06 FS","SI20UBA5-15.06",94,,95,,22,,22,,66,1048,"HK1003 -Blackpoint D2 - Rev.0E DD30092021"
1-6133,SI20UBA5-15.06,"CONSTRUCTION FOUNDATION 20UBA7910/20- Rebarworks for walls",5121,"HK1003-Rev.0E-3",TT_Task,"55902",-,-,-,0,TK_NotStart,29/05/2022,,07/06/2022,,"SI20UBA5-15.05 FS","SI20UBA5-15.05","SI20UBA5-15.07 FS","SI20UBA5-15.07",95,,96,,22,,22,,67,1048,"HK1003 -Blackpoint D2 - Rev.0E DD30092021"
1-6134,SI20UBA5-15.07,"CONSTRUCTION FOUNDATION 20UBA7910/20- Formwork for walls(Closed)",5121,"HK1003-Rev.0E-3",TT_Task,"55902",-,-,-,0,TK_NotStart,08/06/2022,,13/06/2022,,"SI20UBA5-15.06 FS","SI20UBA5-15.06","SI20UBA5-15.08 FS","SI20UBA5-15.08",96,,97,,22,,22,,69,1048,"HK1003 -Blackpoint D2 - Rev.0E DD30092021"
1-6135,SI20UBA5-15.08,"CONSTRUCTION FOUNDATION 20UBA7910/20- Concreting for walls",5121,"HK1003-Rev.0E-3",TT_Task,"55902",-,-,-,0,TK_NotStart,14/06/2022,,15/06/2022,,"SI20UBA5-15.07 FS","SI20UBA5-15.07","SI20UBA5-15.09 FS","SI20UBA5-15.09",97,,97,,22,,22,,69,1048,"HK1003 -Blackpoint D2 - Rev.0E DD30092021"
1-6136,SI20UBA5-15.09,"CONSTRUCTION FOUNDATION 20UBA7910/20- Concreting,desmantling of formwork",5121,"HK1003-Rev.0E-3",TT_Task,"55902",-,-,-,0,TK_NotStart,16/06/2022,,19/06/2022,,"SI20UBA5-15.08 FS","SI20UBA5-15.08","SI20UBA5-75 FS","SI20UBA5-75",97,,98,,22,,22,,70,1048,"HK1003 -Blackpoint D2 - Rev.0E DD30092021"
1-6137,SI20UBD5-61.00,"CONSTRUCTION FOUNDATION 20UBG01/02- Formwork installation for baseslab/foundation",5121,"HK1003-Rev.0E-3",TT_Task,"55902",-,-,-,0,TK_NotStart,23/04/2022,,30/04/2022,,"SI20UBD5-62 FS","SI20UBD5-62","SI20UBD5-64 FS","SI20UBD5-64",90,,91,,21,,21,,59,1144,"HK1003 -Blackpoint D2 - Rev.0E DD30092021"
1-6138,SI20UBD5-61.01,"CONSTRUCTION FOUNDATION 20UBG01/02- Concreting baseslab/foundation",5121,"HK1003-Rev.0E-3",TT_Task,"55902",-,-,-,0,TK_NotStart,15/05/2022,,16/05/2022,,"SI20UBD5-64 FS","SI20UBD5-64","SI20UBD5-61.02 FS","SI20UBD5-61.02",93,,93,,21,,21,,65,1144,"HK1003 -Blackpoint D2 - Rev.0E DD30092021"
1-6139,SI20UBD5-61.02,"CONSTRUCTION FOUNDATION 20UBG01/02- Curing,removal formworks,& backfill baseslab/foundation",5121,"HK1003-Rev.0E-3",TT_Task,"55902",-,-,-,0,TK_NotStart,17/05/2022,,20/05/2022,,"SI20UBD5-61.01 FS","SI20UBD5-61.01","SI20UBD5-63 FS","SI20UBD5-63",93,,93,,21,,21,,65,1144,"HK1003 -Blackpoint D2 - Rev.0E DD30092021"
1-6140,SI20UBZ5-74.00,"CONSTRUCTION FOUNDATION 20UBZ05- Rebarwork for baseslab",5121,"HK1003-Rev.0E-3",TT_Task,"55902",-,-,-,0,TK_NotStart,30/04/2022,,04/05/2022,,"SI20UBZ5-75 FS","SI20UBZ5-75","SI20UBZ5-74.01 SS","SI20UBZ5-74.01",91,,91,,21,,21,,60,1688,"HK1003 -Blackpoint D2 - Rev.0E DD30092021"
1-6141,SI20UBZ5-74.01,"CONSTRUCTION FOUNDATION 20UBZ05- Formwork install for baseslab",5121,"HK1003-Rev.0E-3",TT_Task,"55902",-,-,-,0,TK_NotStart,02/05/2022,,05/05/2022,,"SI20UBZ5-74.00 SS","SI20UBZ5-74.00","SI20UBZ5-74.02 FS","SI20UBZ5-74.02",91,,91,,21,,21,,61,1688,"HK1003 -Blackpoint D2 - Rev.0E DD30092021"
1-6142,SI20UBZ5-74.02,"CONSTRUCTION FOUNDATION 20UBZ05- Concreting for baseslab",5121,"HK1003-Rev.0E-3",TT_Task,"55902",-,-,-,0,TK_NotStart,06/05/2022,,06/05/2022,,"SI20UBZ5-74.01 FS","SI20UBZ5-74.01","SI20UBZ5-74.03 FS,SI20UBZ5-74.07 FS","SI20UBZ5-74.03,SI20UBZ5-74.07",91,,91,,21,,21,,63,1688,"HK1003 -Blackpoint D2 - Rev.0E DD30092021"
1-6143,SI20UBZ5-74.03,"CONSTRUCTION FOUNDATION 20UBZ05- Formwork install for walls",5121,"HK1003-Rev.0E-3",TT_Task,"55902",-,-,-,0,TK_NotStart,07/05/2022,,11/05/2022,,"SI20UBZ5-74.02 FS","SI20UBZ5-74.02","SI20UBZ5-74.04 FS","SI20UBZ5-74.04",92,,92,,21,,21,,63,1688,"HK1003 -Blackpoint D2 - Rev.0E DD30092021"
1-6144,SI20UBZ5-74.04,"CONSTRUCTION FOUNDATION 20UBZ05- Rebarwork for walls",5121,"HK1003-Rev.0E-3",TT_Task,"55902",-,-,-,0,TK_NotStart,12/05/2022,,19/05/2022,,"SI20UBZ5-74.03 FS","SI20UBZ5-74.03","SI20UBZ5-74.05 FS","SI20UBZ5-74.05",92,,93,,21,,21,,64,1688,"HK1003 -Blackpoint D2 - Rev.0E DD30092021"
1-6145,SI20UBZ5-74.05,"CONSTRUCTION FOUNDATION 20UBZ05- Formwork for walls(Closing)",5121,"HK1003-Rev.0E-3",TT_Task,"55902",-,-,-,0,TK_NotStart,20/05/2022,,24/05/2022,,"SI20UBZ5-74.04 FS","SI20UBZ5-74.04","SI20UBZ5-74.06 FS","SI20UBZ5-74.06",93,,94,,21,,22,,66,1688,"HK1003 -Blackpoint D2 - Rev.0E DD30092021"
1-6146,SI20UBZ5-74.06,"CONSTRUCTION FOUNDATION 20UBZ05- Concreting for walls",5121,"HK1003-Rev.0E-3",TT_Task,"55902",-,-,-,0,TK_NotStart,25/05/2022,,26/05/2022,,"SI20UBZ5-74.05 FS","SI20UBZ5-74.05","SI20UBZ5-74.07 FS","SI20UBZ5-74.07",94,,94,,22,,22,,66,1688,"HK1003 -Blackpoint D2 - Rev.0E DD30092021"
1-6147,SI20UBZ5-74.07,"CONSTRUCTION FOUNDATION 20UBZ05- Curing,desmantling,backfill for walls",5121,"HK1003-Rev.0E-3",TT_Task,"55902",-,-,-,0,TK_NotStart,27/05/2022,,31/05/2022,,"SI20UBZ5-74.06 FS,SI20UBZ5-74.02 FS","SI20UBZ5-74.06,SI20UBZ5-74.02","SI20UBZ5-76 FS,SI20UBZ5-74 FF","SI20UBZ5-76,SI20UBZ5-74",94,,95,,22,,22,,66,1688,"HK1003 -Blackpoint D2 - Rev.0E DD30092021"
1-6148,SI20UBD5-15.00,"CONSTRUCTION FOUNDATION 20UBD01/02- Formwork Install for baseslab/foundation",5121,"HK1003-Rev.0E-3",TT_Task,"55902",-,-,-,0,TK_NotStart,14/05/2022,,19/05/2022,,"SI20UBD5-10 FS","SI20UBD5-10","SI20UBD5-15.01 FS","SI20UBD5-15.01",93,,93,,21,,21,,65,1104,"HK1003 -Blackpoint D2 - Rev.0E DD30092021"
1-6149,SI20UBD5-15.01,"CONSTRUCTION FOUNDATION 20UBD01/02- Rebarwork Install for baseslab/foundation",5121,"HK1003-Rev.0E-3",TT_Task,"55902",-,-,-,0,TK_NotStart,20/05/2022,,01/06/2022,,"SI20UBD5-15.00 FS","SI20UBD5-15.00","SI20UBD5-15.02 FS","SI20UBD5-15.02",93,,95,,21,,22,,66,1104,"HK1003 -Blackpoint D2 - Rev.0E DD30092021"
1-6150,SI20UBD5-15.02,"CONSTRUCTION FOUNDATION 20UBD01/02- Concreting baseslab/foundation",5121,"HK1003-Rev.0E-3",TT_Task,"55902",-,-,-,0,TK_NotStart,02/06/2022,,02/06/2022,,"SI20UBD5-15.01 FS","SI20UBD5-15.01","SI20UBD5-15.03 FS","SI20UBD5-15.03",95,,95,,22,,22,,68,1104,"HK1003 -Blackpoint D2 - Rev.0E DD30092021"
1-6151,SI20UBD5-15.03,"CONSTRUCTION FOUNDATION 20UBD01/02- Curing,desmantling formwork,backfill baseslab/foundation",5121,"HK1003-Rev.0E-3",TT_Task,"55902",-,-,-,0,TK_NotStart,03/06/2022,,05/06/2022,,"SI20UBD5-15.02 FS","SI20UBD5-15.02","SI20UBD5-45 FS","SI20UBD5-45",95,,96,,22,,22,,68,1104,"HK1003 -Blackpoint D2 - Rev.0E DD30092021"
1-6152,SI20UBX5-15.00,"CONSTRUCTION FOUNDATION 20UBX/20UBG03- Formwork installation for baseslab/foundation",5121,"HK1003-Rev.0E-3",TT_Task,"55902",-,-,-,0,TK_NotStart,23/04/2022,,28/04/2022,,"SI20UBX5-10 FS","SI20UBX5-10","SI20UBX5-15.01 SS","SI20UBX5-15.01",90,,90,,21,,21,,59,1000,"HK1003 -Blackpoint D2 - Rev.0E DD30092021"
1-6153,SI20UBX5-15.01,"CONSTRUCTION FOUNDATION 20UBX/20UBG03- Rebarwork,grounding install for baseslab/foundation",5121,"HK1003-Rev.0E-3",TT_Task,"55902",-,-,-,0,TK_NotStart,26/04/2022,,06/05/2022,,"SI20UBX5-15.00 SS","SI20UBX5-15.00","SI20UBX5-15.02 FS","SI20UBX5-15.02",90,,91,,21,,21,,59,1000,"HK1003 -Blackpoint D2 - Rev.0E DD30092021"
1-6154,SI20UBX5-15.02,"CONSTRUCTION FOUNDATION 20UBX/20UBG03- Concreting baseslab/foundation",5121,"HK1003-Rev.0E-3",TT_Task,"55902",-,-,-,0,TK_NotStart,07/05/2022,,07/05/2022,,"SI20UBX5-15.01 FS","SI20UBX5-15.01","SI20UBX5-15.03 FS","SI20UBX5-15.03",92,,92,,21,,21,,63,1000,"HK1003 -Blackpoint D2 - Rev.0E DD30092021"
1-6155,SI20UBX5-15.03,"CONSTRUCTION FOUNDATION 20UBX/20UBG03- Curing,removal formwork,backfill baseslab/foundation",5121,"HK1003-Rev.0E-3",TT_Task,"55902",-,-,-,0,TK_NotStart,08/05/2022,,11/05/2022,,"SI20UBX5-15.02 FS","SI20UBX5-15.02","SI20UBX5-45 FS,SI20UBX5-46 FS","SI20UBX5-45,SI20UBX5-46",92,,92,,21,,21,,64,1000,"HK1003 -Blackpoint D2 - Rev.0E DD30092021"
1-6156,SI20UBY5-50.00,"CONSTRUCTION FOUNDATION 20UBY02- Rebarwork,grounding install for baseslab/foundation",5121,"HK1003-Rev.0E-3",TT_Task,"55902",-,-,-,0,TK_NotStart,15/07/2022,,01/08/2022,,"SI20UBY5-51 FS","SI20UBY5-51","SI20UBY5-50.01 FS","SI20UBY5-50.01",101,,104,,23,,24,,73,1144,"HK1003 -Blackpoint D2 - Rev.0E DD30092021"
1-6157,SI20UBY5-50.01,"CONSTRUCTION FOUNDATION 20UBY02- Formwork installation for baseslab/foundation",5121,"HK1003-Rev.0E-3",TT_Task,"55902",-,-,-,0,TK_NotStart,02/08/2022,,07/08/2022,,"SI20UBY5-50.00 FS","SI20UBY5-50.00","SI20UBY5-50.02 FS","SI20UBY5-50.02",104,,105,,24,,24,,76,1144,"HK1003 -Blackpoint D2 - Rev.0E DD30092021"
1-6158,SI20UBY5-50.02,"CONSTRUCTION FOUNDATION 20UBY02- Concreting baseslab/foundation",5121,"HK1003-Rev.0E-3",TT_Task,"55902",-,-,-,0,TK_NotStart,08/08/2022,,08/08/2022,,"SI20UBY5-50.01 FS","SI20UBY5-50.01","SI20UBY5-50.03 FS","SI20UBY5-50.03",105,,105,,24,,24,,77,1144,"HK1003 -Blackpoint D2 - Rev.0E DD30092021"
1-6159,SI20UBY5-50.03,"CONSTRUCTION FOUNDATION 20UBY02- Curing,removal formwork,backfill baseslab/foundation",5121,"HK1003-Rev.0E-3",TT_Task,"55902",-,-,-,0,TK_NotStart,09/08/2022,,12/08/2022,,"SI20UBY5-50.02 FS","SI20UBY5-50.02","SI20UBY5-52 FS","SI20UBY5-52",105,,105,,24,,24,,77,1144,"HK1003 -Blackpoint D2 - Rev.0E DD30092021"
1-6160,SI20UBZ5-66.00,"CONSTRUCTION FOUNDATION 20UBZ04- Formwork installation for baseslab/foundation",5121,"HK1003-Rev.0E-3",TT_Task,"55902",-,-,-,0,TK_NotStart,27/05/2022,,30/05/2022,,"SI20UBZ5-67 FS","SI20UBZ5-67","SI20UBZ5-66.01 FS","SI20UBZ5-66.01",94,,95,,22,,22,,66,560,"HK1003 -Blackpoint D2 - Rev.0E DD30092021"
1-6161,SI20UBZ5-66.01,"CONSTRUCTION FOUNDATION 20UBZ04- Rebarwork,grounding install for baseslab/foundation",5121,"HK1003-Rev.0E-3",TT_Task,"55902",-,-,-,0,TK_NotStart,31/05/2022,,04/06/2022,,"SI20UBZ5-66.00 FS","SI20UBZ5-66.00","SI20UBZ5-66.02 FS","SI20UBZ5-66.02",95,,96,,22,,22,,67,560,"HK1003 -Blackpoint D2 - Rev.0E DD30092021"
1-6162,SI20UBZ5-66.02,"CONSTRUCTION FOUNDATION 20UBZ04-Concreting baseslab/foundation",5121,"HK1003-Rev.0E-3",TT_Task,"55902",-,-,-,0,TK_NotStart,05/06/2022,,05/06/2022,,"SI20UBZ5-66.01 FS","SI20UBZ5-66.01","SI20UBZ5-66.03 FS","SI20UBZ5-66.03",96,,96,,22,,22,,68,560,"HK1003 -Blackpoint D2 - Rev.0E DD30092021"
1-6163,SI20UBZ5-66.03,"CONSTRUCTION FOUNDATION 20UBZ04- Formwork for walls(One side)",5121,"HK1003-Rev.0E-3",TT_Task,"55902",-,-,-,0,TK_NotStart,06/06/2022,,10/06/2022,,"SI20UBZ5-66.02 FS","SI20UBZ5-66.02","SI20UBZ5-66.04 FS","SI20UBZ5-66.04",96,,96,,22,,22,,68,560,"HK1003 -Blackpoint D2 - Rev.0E DD30092021"
1-6164,SI20UBZ5-66.04,"CONSTRUCTION FOUNDATION 20UBZ04- Rebarworks for walls",5121,"HK1003-Rev.0E-3",TT_Task,"55902",-,-,-,0,TK_NotStart,11/06/2022,,18/06/2022,,"SI20UBZ5-66.03 FS","SI20UBZ5-66.03","SI20UBZ5-66.05 FS","SI20UBZ5-66.05",97,,98,,22,,22,,69,560,"HK1003 -Blackpoint D2 - Rev.0E DD30092021"
1-6165,SI20UBZ5-66.05,"CONSTRUCTION FOUNDATION 20UBZ04- Formwork for walls(Closed)",5121,"HK1003-Rev.0E-3",TT_Task,"55902",-,-,-,0,TK_NotStart,19/06/2022,,24/06/2022,,"SI20UBZ5-66.04 FS","SI20UBZ5-66.04","SI20UBZ5-66.06 FS","SI20UBZ5-66.06",98,,98,,22,,23,,70,560,"HK1003 -Blackpoint D2 - Rev.0E DD30092021"
1-6166,SI20UBZ5-66.06,"CONSTRUCTION FOUNDATION 20UBZ04- Concreting for walls",5121,"HK1003-Rev.0E-3",TT_Task,"55902",-,-,-,0,TK_NotStart,25/06/2022,,25/06/2022,,"SI20UBZ5-66.05 FS","SI20UBZ5-66.05","SI20UBZ5-66.07 FS","SI20UBZ5-66.07",99,,99,,23,,23,,71,560,"HK1003 -Blackpoint D2 - Rev.0E DD30092021"
1-6167,SI20UBZ5-66.07,"CONSTRUCTION FOUNDATION 20UBZ04- Curing,removal formwork,backfill baseslab/foundation",5121,"HK1003-Rev.0E-3",TT_Task,"55902",-,-,-,0,TK_NotStart,26/06/2022,,30/06/2022,,"SI20UBZ5-66.06 FS","SI20UBZ5-66.06","SI20UBZ5-68 FS","SI20UBZ5-68",99,,99,,23,,23,,71,560,"HK1003 -Blackpoint D2 - Rev.0E DD30092021"
1.1,57048,"Modules_from_ZIN107",5121,"HK1003-Rev.0E-3",WBS,"55902",,,,100,Complete,01/08/2020,01/08/2020,14/04/2023,,,,,,0,0,140,,0,0,32,,,,"HK1003 -Blackpoint D2 - Rev.0E DD30092021"
1.1.1,57050,"Modules_from_ZIN107",5121,"HK1003-Rev.0E-3",WBS,"57048",,,,,Active,01/12/2020,01/12/2020,14/04/2023,,,,,,17,17,140,,4,4,32,,,,"HK1003 -Blackpoint D2 - Rev.0E DD30092021;Modules_from_ZIN107"
1.1.1-1,SI20BZP7-165,"ERECTION CABLE TRAYS FOR 20UMCL1Y",5121,"HK1003-Rev.0E-3",TT_Task,"57050",-,-,-,0,TK_NotStart,21/05/2022,,24/06/2022,,"SI--BZP4B40 FS,SI20BZP7-26 FS,SI--PEE7-20 FS,SI20UMC6M16 FS","SI--BZP4B40,SI20BZP7-26,SI--PEE7-20,SI20UMC6M16","SI20BZP7B10# FF,SI20BZP7B10# SS,SI20BZK7E26 SS,SI20BZP7-10 FS,SI20BZK7E26 FS","SI20BZP7B10#,SI20BZP7B10#,SI20BZK7E26,SI20BZP7-10,SI20BZK7E26",94,,98,,21,,23,,66,2128,"HK1003 -Blackpoint D2 - Rev.0E DD30092021;Modules_from_ZIN107;Modules_from_ZIN107"
1.1.1-2,SI20BZP7-10,"ERECTION CABLE TRAYS FOR 20MAG50Y",5121,"HK1003-Rev.0E-3",TT_Task,"57050",-,-,-,0,TK_NotStart,25/06/2022,,15/07/2022,,"SI20MAG4M40 FS,SI20BZP7-26 FS,SI--PEE7-20 FS,SI20MAG6M10 FS,SI20BZP7-165 FS","SI20MAG4M40,SI20BZP7-26,SI--PEE7-20,SI20MAG6M10,SI20BZP7-165","SI20BZP7B10# FF,SI20BZP7B10# SS,SI20BZK7E26 SS","SI20BZP7B10#,SI20BZP7B10#,SI20BZK7E26",99,,101,,23,,23,,71,2128,"HK1003 -Blackpoint D2 - Rev.0E DD30092021;Modules_from_ZIN107;Modules_from_ZIN107"
1.1.1-3,SI20---3B12,"ERECTION MANUALS ON SITE (CLOUD) FOR OFF RACK PIPING LOT 4",5121,"HK1003-Rev.0E-3",TT_FinMile,"57050",-,-,-,0,TK_NotStart,19/01/2022,,19/01/2022,,"SI20-1P340 FS","SI20-1P340","SI20---3B80 FF","SI20---3B80",76,,76,,17,,17,,46,128,"HK1003 -Blackpoint D2 - Rev.0E DD30092021;Modules_from_ZIN107;Modules_from_ZIN107"
1.1.1-4,SI20---3B19,"ERECTION MANUALS ON SITE (CLOUD) FOR OFF RACK PIPING LOT 5",5121,"HK1003-Rev.0E-3",TT_FinMile,"57050",-,-,-,0,TK_NotStart,17/02/2022,,17/02/2022,,"SI---1P2H538 FS","SI---1P2H538","SI20---3B81 FS","SI20---3B81",80,,80,,18,,18,,50,688,"HK1003 -Blackpoint D2 - Rev.0E DD30092021;Modules_from_ZIN107;Modules_from_ZIN107"
1.1.1-5,SI20---3B18,"ERECTION MANUALS ON SITE (CLOUD) FOR OFF RACK PIPING LOT 6",5121,"HK1003-Rev.0E-3",TT_FinMile,"57050",-,-,-,0,TK_NotStart,09/07/2022,,09/07/2022,,"SI---1P2H537 FS","SI---1P2H537","SI20---3B82 FS","SI20---3B82",101,,101,,23,,23,,73,1112,"HK1003 -Blackpoint D2 - Rev.0E DD30092021;Modules_from_ZIN107;Modules_from_ZIN107"
1.1.1-6,SI20---3M86,"ERECTION MANUALS ON SITE (CLOUD) FOR SHIPMENT LOT 3",5121,"HK1003-Rev.0E-3",TT_FinMile,"57050",-,-,-,0,TK_NotStart,02/03/2022,,02/03/2022,,"SI20---3B51 FS","SI20---3B51","SI20---3M82 FS,SI20---3M106 FS","SI20---3M82,SI20---3M106",82,,82,,19,,19,,51,1104,"HK1003 -Blackpoint D2 - Rev.0E DD30092021;Modules_from_ZIN107;Modules_from_ZIN107"
1.1.1-7,SI20---3M85,"ERECTION MANUALS ON SITE (CLOUD) FOR SHIPMENT LOT 2",5121,"HK1003-Rev.0E-3",TT_FinMile,"57050",-,-,-,0,TK_NotStart,17/02/2022,,17/02/2022,,"SI20---3B44 FS","SI20---3B44","SI20---3M81 FS","SI20---3M81",80,,80,,18,,18,,50,216,"HK1003 -Blackpoint D2 - Rev.0E DD30092021;Modules_from_ZIN107;Modules_from_ZIN107"
1.1.1-8,SI20---3M84,"ERECTION MANUALS ON SITE (CLOUD) FOR SHIPMENT LOT 1",5121,"HK1003-Rev.0E-3",TT_FinMile,"57050",-,-,-,0,TK_NotStart,02/03/2022,,02/03/2022,,"SI20---3B37 FF","SI20---3B37","SI20---3M80 FF,SI20---3M80 FS","SI20---3M80,SI20---3M80",82,,82,,19,,19,,51,240,"HK1003 -Blackpoint D2 - Rev.0E DD30092021;Modules_from_ZIN107;Modules_from_ZIN107"
1.1.1-9,SI20---3G78,"PROCUREMENT BOLTS / NUTS / WASHERS (100%)",5121,"HK1003-Rev.0E-3",TT_Task,"57050",-,-,-,90,TK_Active,10/07/2021,10/07/2021,08/10/2021,,"SI20---3G25 SS","SI20---3G25","SI20---3B52 FS,SI20---3B45 FS,SI20---3B37 FS,SI20---3G75& FS","SI20---3B52,SI20---3B45,SI20---3B37,SI20---3G75&",49,49,61,,11,11,14,,21,952,"HK1003 -Blackpoint D2 - Rev.0E DD30092021;Modules_from_ZIN107;Modules_from_ZIN107"
1.1.1-10,SI20---3G76,"PROCUREMENT STEEL PLATES (50%)",5121,"HK1003-Rev.0E-3",TT_Task,"57050",-,-,-,90,TK_Active,10/07/2021,10/07/2021,08/10/2021,,"SI20---3G25 SS","SI20---3G25","SI20---3G75& FS","SI20---3G75&",49,49,61,,11,11,14,,21,952,"HK1003 -Blackpoint D2 - Rev.0E DD30092021;Modules_from_ZIN107;Modules_from_ZIN107"
1.1.1-11,SI20---3G74,"PROCUREMENT STEEL PLATES (50%)",5121,"HK1003-Rev.0E-3",TT_Task,"57050",-,-,-,100,TK_Complete,05/06/2021,05/06/2021,03/09/2021,03/09/2021,"SI20---3G25 SS","SI20---3G25","SI20---3G73& FS","SI20---3G73&",44,44,56,56,10,10,13,13,16,,"HK1003 -Blackpoint D2 - Rev.0E DD30092021;Modules_from_ZIN107;Modules_from_ZIN107"
1.1.1-12,SI20---3G72,"PROCUREMENT STEEL PROFILES (25%)",5121,"HK1003-Rev.0E-3",TT_Task,"57050",-,-,-,100,TK_Complete,05/06/2021,05/06/2021,03/09/2021,03/09/2021,"SI20---3G25 SS","SI20---3G25","SI20---3G73& FS","SI20---3G73&",44,44,56,56,10,10,13,13,16,,"HK1003 -Blackpoint D2 - Rev.0E DD30092021;Modules_from_ZIN107;Modules_from_ZIN107"
1.1.1-13,SI-----2F87,"BoQ QUALITY GATE",5121,"HK1003-Rev.0E-3",TT_Mile,"57050",-,-,-,100,TK_Complete,01/05/2021,01/05/2021,01/05/2021,01/05/2021,"SI-----2F71 FS","SI-----2F71","SI20---3G26 FS","SI20---3G26",39,39,39,39,9,9,9,9,10,,"HK1003 -Blackpoint D2 - Rev.0E DD30092021;Modules_from_ZIN107;Modules_from_ZIN107"
1.1.1-14,SI20---3M105,"PROCUREMENT LONG LEAD ITEMS PART 3 (100%)",5121,"HK1003-Rev.0E-3",TT_Task,"57050",-,-,-,100,TK_Complete,04/06/2021,04/06/2021,09/09/2021,09/09/2021,"SI-----2E88 FS","SI-----2E88","SI20---3B51 FS,SI20---3B44 FS,SI20-1P340 FF","SI20---3B51,SI20---3B44,SI20-1P340",43,43,57,57,10,10,13,13,15,,"HK1003 -Blackpoint D2 - Rev.0E DD30092021;Modules_from_ZIN107;Modules_from_ZIN107"
1.1.1-15,SI-----2E88,"ORDER MTO LONG LEAD ITEMS (100%)",5121,"HK1003-Rev.0E-3",TT_Mile,"57050",-,-,-,100,TK_Complete,04/06/2021,04/06/2021,04/06/2021,04/06/2021,"SI-----2E85 SS,SI-----2E89 FS,SI-----2E86 FS","SI-----2E85,SI-----2E89,SI-----2E86","SI20---3M105 FS","SI20---3M105",43,43,43,43,10,10,10,10,15,,"HK1003 -Blackpoint D2 - Rev.0E DD30092021;Modules_from_ZIN107;Modules_from_ZIN107"
1.1.1-16,SI-----2E87,"BoQ QUALITY GATE",5121,"HK1003-Rev.0E-3",TT_Mile,"57050",-,-,-,100,TK_Complete,12/03/2021,12/03/2021,12/03/2021,12/03/2021,"SI-----2E66 FS,SI--3331-32 FS","SI-----2E66,SI--3331-32","SI20---3M30 FS,SI-----2M30 SS,SI20---3M30 SS,SI-----2E95 FS,SI---1P2A513 FS","SI20---3M30,SI-----2M30,SI20---3M30,SI-----2E95,SI---1P2A513",31,31,31,31,7,7,7,7,6,,"HK1003 -Blackpoint D2 - Rev.0E DD30092021;Modules_from_ZIN107;Modules_from_ZIN107"
1.1.1-17,SI-----2H60,"(MS3) BB STEELWORK LOT 3",5121,"HK1003-Rev.0E-3",TT_Mile,"57050",-,-,-,100,TK_Complete,27/05/2021,27/05/2021,27/05/2021,27/05/2021,"SI--LAC2B60 FS,SI--PGB2C62 FS,SI--PGB2D61 FS,SI--PGB2B60 FS,SI-----3M63 FS,SI20PCB2B67 FS","SI--LAC2B60,SI--PGB2C62,SI--PGB2D61,SI--PGB2B60,SI-----3M63,SI20PCB2B67","SI20---2B50 SS","SI20---2B50",42,42,42,42,9,9,9,9,14,,"HK1003 -Blackpoint D2 - Rev.0E DD30092021;Modules_from_ZIN107;Modules_from_ZIN107"
1.1.1-18,SI-----2G60,"(MS3) BB STEELWORK LOT 2",5121,"HK1003-Rev.0E-3",TT_Mile,"57050",-,-,-,100,TK_Complete,02/06/2021,02/06/2021,02/06/2021,02/06/2021,"SI--LDK2B61 FS,SI-----3M62 FS,SI--LCA2B60 FS,SI--LDK2B89 FS,SI--LCA2B87 FS","SI--LDK2B61,SI-----3M62,SI--LCA2B60,SI--LDK2B89,SI--LCA2B87","SI20UEY2-60 FS,SI20---2B43 SS,SI20UEY2-86 FS","SI20UEY2-60,SI20---2B43,SI20UEY2-86",43,43,43,43,10,10,10,10,15,,"HK1003 -Blackpoint D2 - Rev.0E DD30092021;Modules_from_ZIN107;Modules_from_ZIN107"
1.1.1-19,SI-----2F60,"(MS3) BB STEELWORK LOT 1",5121,"HK1003-Rev.0E-3",TT_Mile,"57050",-,-,-,100,TK_Complete,11/05/2021,11/05/2021,11/05/2021,11/05/2021,"SI-----3M61 FS","SI-----3M61","SI-----3M64 FS,SI20UEY2-35 FS","SI-----3M64,SI20UEY2-35",40,40,40,40,9,9,9,9,12,,"HK1003 -Blackpoint D2 - Rev.0E DD30092021;Modules_from_ZIN107;Modules_from_ZIN107"
1.1.1-20,SI-----3M64,"DETAIL DESIGN BB STEELWORK LOT 1",5121,"HK1003-Rev.0E-3",TT_Task,"57050",-,-,-,100,TK_Complete,11/05/2021,11/05/2021,16/06/2021,16/06/2021,"SI-----2F60 FS,SI-----3M61 FS","SI-----2F60,SI-----3M61","SI20---3M25 SS,SI--2M-11 FS","SI20---3M25,SI--2M-11",40,40,45,45,9,9,10,10,12,,"HK1003 -Blackpoint D2 - Rev.0E DD30092021;Modules_from_ZIN107;Modules_from_ZIN107"
1.1.1-21,SI20---3B11,"DELIVERY OF VALVES (FLANGE) FOR SHIPMENT LOT 3",5121,"HK1003-Rev.0E-3",TT_FinMile,"57050",-,-,-,0,TK_NotStart,01/12/2021,,01/12/2021,,"SI----P3I21 FF","SI----P3I21","SI20---3B51 FF,SI20---3B52 FS","SI20---3B51,SI20---3B52",69,,69,,16,,16,,40,1568,"HK1003 -Blackpoint D2 - Rev.0E DD30092021;Modules_from_ZIN107;Modules_from_ZIN107"
1.1.1-22,SI20---3B09,"DELIVERY OF VALVES (WELDING) FOR SHIPMENT LOT 3",5121,"HK1003-Rev.0E-3",TT_FinMile,"57050",-,-,-,0,TK_NotStart,01/11/2021,,01/11/2021,,"SI20---3M20 FF,SI----P3I21 FS,SI----P3I33 FF","SI20---3M20,SI----P3I21,SI----P3I33","SI20---3B51 FF","SI20---3B51",65,,65,,15,,15,,36,1592,"HK1003 -Blackpoint D2 - Rev.0E DD30092021;Modules_from_ZIN107;Modules_from_ZIN107"
1.1.1-23,SI20---2M30,"SUBMISSION OF 50% OF FABRICATION DOCUMENTS FOR SHIPMENT LOT 3",5121,"HK1003-Rev.0E-3",TT_Mile,"57050",-,-,-,0,TK_NotStart,10/11/2021,,10/11/2021,,"SI20---3M14 FS","SI20---3M14","SI20---3M15 FS","SI20---3M15",66,,66,,15,,15,,37,1184,"HK1003 -Blackpoint D2 - Rev.0E DD30092021;Modules_from_ZIN107;Modules_from_ZIN107"
1.1.1-24,SI20---3B13,"DELIVERY OF COMPONENTS FOR SHIPMENT LOT 3",5121,"HK1003-Rev.0E-3",TT_FinMile,"57050",-,-,-,0,TK_NotStart,15/02/2022,,15/02/2022,,"SI20PDB4B14 FS,SI20PGB4M22 FS,SI20PGB4M24 FS,SI20LCA4M23 FS,SI20PAH4-40 FF","SI20PDB4B14,SI20PGB4M22,SI20PGB4M24,SI20LCA4M23,SI20PAH4-40","SI20---3B52 FS","SI20---3B52",80,,80,,18,,18,,49,952,"HK1003 -Blackpoint D2 - Rev.0E DD30092021;Modules_from_ZIN107;Modules_from_ZIN107"
1.1.1-25,SI20---3B10,"DELIVERY OF COMPONENTS FOR SHIPMENT LOT 2",5121,"HK1003-Rev.0E-3",TT_FinMile,"57050",-,-,-,0,TK_NotStart,10/01/2022,,10/01/2022,,"SI20LCA4B42 FS,SI20LDK2B05 FS,SI20PCB4B25 FS,SI20PCB4M24 FS,SI20PGB4D42 FS,SI20PGB4B41 FS,SI20PDB4B14 FS,SI20MKW4-41 FS","SI20LCA4B42,SI20LDK2B05,SI20PCB4B25,SI20PCB4M24,SI20PGB4D42,SI20PGB4B41,SI20PDB4B14,SI20MKW4-41","SI20---3B45 FS","SI20---3B45",75,,75,,17,,17,,44,208,"HK1003 -Blackpoint D2 - Rev.0E DD30092021;Modules_from_ZIN107;Modules_from_ZIN107"
1.1.1-26,SI20---3B07,"DELIVERY OF VALVES (FLANGE) FOR SHIPMENT LOT 2",5121,"HK1003-Rev.0E-3",TT_FinMile,"57050",-,-,-,0,TK_NotStart,01/12/2021,,01/12/2021,,"SI----P3I21 FF","SI----P3I21","SI20---3B44 FF","SI20---3B44",69,,69,,16,,16,,40,608,"HK1003 -Blackpoint D2 - Rev.0E DD30092021;Modules_from_ZIN107;Modules_from_ZIN107"
1.1.1-27,SI20---3B06,"DELIVERY OF VALVES (WELDING) FOR SHIPMENT LOT 2",5121,"HK1003-Rev.0E-3",TT_FinMile,"57050",-,-,-,0,TK_NotStart,01/11/2021,,01/11/2021,,"SI20---3M20 FF,SI----P3I21 FS,SI----P3I33 FS","SI20---3M20,SI----P3I21,SI----P3I33","SI20---3B44 FF","SI20---3B44",65,,65,,15,,15,,36,632,"HK1003 -Blackpoint D2 - Rev.0E DD30092021;Modules_from_ZIN107;Modules_from_ZIN107"
1.1.1-28,SI20---2M29,"SUBMISSION OF 50% OF FABRICATION DOCUMENTS FOR SHIPMENT LOT 2",5121,"HK1003-Rev.0E-3",TT_Mile,"57050",-,-,-,0,TK_NotStart,08/10/2021,,08/10/2021,,"SI20---3M10 FS","SI20---3M10","SI20---3M11 SS","SI20---3M11",61,,61,,14,,14,,32,480,"HK1003 -Blackpoint D2 - Rev.0E DD30092021;Modules_from_ZIN107;Modules_from_ZIN107"
1.1.1-29,SI20---3B05,"DELIVERY OF VALVES (FLANGE) FOR SHIPMENT LOT 1",5121,"HK1003-Rev.0E-3",TT_FinMile,"57050",-,-,-,0,TK_NotStart,01/12/2021,,01/12/2021,,"SI----P3I21 FF","SI----P3I21","SI20---3B37 FS","SI20---3B37",69,,69,,16,,16,,40,520,"HK1003 -Blackpoint D2 - Rev.0E DD30092021;Modules_from_ZIN107;Modules_from_ZIN107"
1.1.1-30,SI20---3B04,"DELIVERY OF VALVES (WELDING) FOR SHIPMENT LOT 1",5121,"HK1003-Rev.0E-3",TT_FinMile,"57050",-,-,-,0,TK_NotStart,01/11/2021,,01/11/2021,,"SI20---3M20 FS,SI----P3I33 FS,SI----P3I21 FS","SI20---3M20,SI----P3I33,SI----P3I21","SI20-1P340 FF","SI20-1P340",65,,65,,15,,15,,36,392,"HK1003 -Blackpoint D2 - Rev.0E DD30092021;Modules_from_ZIN107;Modules_from_ZIN107"
1.1.1-31,SI20---2M28,"KICK OFF MEETING PREFABRICATION",5121,"HK1003-Rev.0E-3",TT_Mile,"57050",-,-,-,100,TK_Complete,08/09/2021,08/09/2021,08/09/2021,08/09/2021,"SI20---3M06 FS","SI20---3M06","SI20-1P340 FS","SI20-1P340",57,57,57,57,13,13,13,13,29,,"HK1003 -Blackpoint D2 - Rev.0E DD30092021;Modules_from_ZIN107;Modules_from_ZIN107"
1.1.1-32,SI20---2M27,"SUBMISSION OF 50% OF FABRICATION DOCUMENTS FOR SHIPMENT LOT 1",5121,"HK1003-Rev.0E-3",TT_Mile,"57050",-,-,-,100,TK_Complete,08/09/2021,08/09/2021,08/09/2021,08/09/2021,"SI20---3M06 FS","SI20---3M06","SI20-1P340 FS","SI20-1P340",57,57,57,57,13,13,13,13,29,,"HK1003 -Blackpoint D2 - Rev.0E DD30092021;Modules_from_ZIN107;Modules_from_ZIN107"
1.1.1-33,SP20MBK3B80,"(RFS) READY FOR SHIPMENT TURNING DEVICE 20MBK",5121,"HK1003-Rev.0E-3",TT_FinMile,"57050",-,-,-,0,TK_NotStart,29/04/2022,,29/04/2022,,"SP20MBK4-10 FS","SP20MBK4-10","SI20MBK4E25 FS","SI20MBK4E25",90,,90,,21,,21,,60,504,"HK1003 -Blackpoint D2 - Rev.0E DD30092021;Modules_from_ZIN107;Modules_from_ZIN107"
1.1.1-34,SI20---3B89,"(RFS) READY FOR SHIPMENT GT INTERMEDIATE SHAFT 20MB-",5121,"HK1003-Rev.0E-3",TT_FinMile,"57050",-,-,-,0,TK_NotStart,29/04/2022,,29/04/2022,,"SI20---4-18 FF,SI20---4-18 FS","SI20---4-18,SI20---4-18","SI20MBA4-26 FS","SI20MBA4-26",90,,90,,21,,21,,60,184,"HK1003 -Blackpoint D2 - Rev.0E DD30092021;Modules_from_ZIN107;Modules_from_ZIN107"
1.1.1-35,SI20PCB4-40,"(OTD-OS) ON SITE MODULE 20PCB10Y",5121,"HK1003-Rev.0E-3",TT_FinMile,"57050",-,-,-,0,TK_NotStart,03/06/2022,,03/06/2022,,"SI20PCB4M25 FS,SI20---4M26 FS,SI20---3M114 FS","SI20PCB4M25,SI20---4M26,SI20---3M114","SI20PCB6M16 FS","SI20PCB6M16",95,,95,,22,,22,,68,1104,"HK1003 -Blackpoint D2 - Rev.0E DD30092021;Modules_from_ZIN107;Modules_from_ZIN107"
1.1.1-36,SI20---3B82,"(RFS) READY FOR SHIPMENT OFFRACK / YARD LOT 6",5121,"HK1003-Rev.0E-3",TT_FinMile,"57050",-,-,-,0,TK_NotStart,20/08/2022,,20/08/2022,,"SI20---3B18 FS,SI20---4-12 FS","SI20---3B18,SI20---4-12","SI20---4B27 FS","SI20---4B27",107,,107,,24,,24,,78,1112,"HK1003 -Blackpoint D2 - Rev.0E DD30092021;Modules_from_ZIN107;Modules_from_ZIN107"
1.1.1-37,SI20---4B27,"TRANSPORT OFFRACK PIPING LOT 6",5121,"HK1003-Rev.0E-3",TT_Task,"57050",-,-,-,0,TK_NotStart,21/08/2022,,24/09/2022,,"SI20---3B82 FS","SI20---3B82","SI---1P6A8 FS","SI---1P6A8",107,,112,,25,,26,,78,1112,"HK1003 -Blackpoint D2 - Rev.0E DD30092021;Modules_from_ZIN107;Modules_from_ZIN107"
1.1.1-38,SI20---3B81,"(RFS) READY FOR SHIPMENT OFFRACK / YARD LOT 5",5121,"HK1003-Rev.0E-3",TT_FinMile,"57050",-,-,-,0,TK_NotStart,31/03/2022,,31/03/2022,,"SI20---3B19 FS,SI20---4-11 FS","SI20---3B19,SI20---4-11","SI20---4B26 FS","SI20---4B26",86,,86,,20,,20,,54,688,"HK1003 -Blackpoint D2 - Rev.0E DD30092021;Modules_from_ZIN107;Modules_from_ZIN107"
1.1.1-39,SI20---4B26,"TRANSPORT OFFRACK PIPING/ YARD LOT 5",5121,"HK1003-Rev.0E-3",TT_Task,"57050",-,-,-,0,TK_NotStart,01/04/2022,,05/05/2022,,"SI20---3B81 FS","SI20---3B81","SI---1P6A7 FS,SI20UMC6A-30 FF,SI20UMC6A-15 FF,SI20UMC6B-35 FF,SI20UMC6B-55 FF,SI20UMC6B-15 FF,SI20UMC6B-75 FF,SI20UMC6-15 FF,SI20UHW6A-15 FF,SI20UHA6B-15 FF,SI20UMY6B-15 FF,SI20UHA6-15 FF,SI20URA6-5 FS,SI20UEN65 FS,SI20UBF615 FF,SI20UEZ6A-10 FF,SI20UEZ6B-10 FF,SI20UMY6B20 FF,SI20ULD6B15 FF,SI20UVM6B15 FS","SI---1P6A7,SI20UMC6A-30,SI20UMC6A-15,SI20UMC6B-35,SI20UMC6B-55,SI20UMC6B-15,SI20UMC6B-75,SI20UMC6-15,SI20UHW6A-15,SI20UHA6B-15,SI20UMY6B-15,SI20UHA6-15,SI20URA6-5,SI20UEN65,SI20UBF615,SI20UEZ6A-10,SI20UEZ6B-10,SI20UMY6B20,SI20ULD6B15,SI20UVM6B15",86,,91,,20,,21,,54,688,"HK1003 -Blackpoint D2 - Rev.0E DD30092021;Modules_from_ZIN107;Modules_from_ZIN107"
1.1.1-40,SI20---3B80,"(RFS) READY FOR SHIPMENT OFFRACK / YARD LOT 4",5121,"HK1003-Rev.0E-3",TT_FinMile,"57050",-,-,-,0,TK_NotStart,02/03/2022,,02/03/2022,,"SI20---3B12 FF,SI20---4-10 FS","SI20---3B12,SI20---4-10","SI20---4B25 FS","SI20---4B25",82,,82,,19,,19,,51,128,"HK1003 -Blackpoint D2 - Rev.0E DD30092021;Modules_from_ZIN107;Modules_from_ZIN107"
1.1.1-41,SI20---4B25,"TRANSPORT OFFRACK PIPING / YARD LOT 4",5121,"HK1003-Rev.0E-3",TT_Task,"57050",-,-,-,0,TK_NotStart,03/03/2022,,06/04/2022,,"SI20---3B80 FS","SI20---3B80","SI---1P6A6 FS,SI20UBF65 FS,SI20UMC6-5 FS,SI20UMC6B-45 FS,SI20UMC6B-5 FS,SI20UMC6A-40 FS,SI20UMC6B-25 FS,SI20UMC6B-65 FS,SI20UHA6B-5 FS,SI20UHA6-5 FS,SI20URA6-5 FS,SI20UEN65 FS,SI20UEZ6B-20 FS,SI20UEZ6A-20 FS,SI20UMY6B10 FS,SI20ULD6B5 FS,SI20UVM6B15 FS,SI20UMC6A-5 FS,SI20UMY6B-5 FS,SI20UHW6A-5 FS","SI---1P6A6,SI20UBF65,SI20UMC6-5,SI20UMC6B-45,SI20UMC6B-5,SI20UMC6A-40,SI20UMC6B-25,SI20UMC6B-65,SI20UHA6B-5,SI20UHA6-5,SI20URA6-5,SI20UEN65,SI20UEZ6B-20,SI20UEZ6A-20,SI20UMY6B10,SI20ULD6B5,SI20UVM6B15,SI20UMC6A-5,SI20UMY6B-5,SI20UHW6A-5",82,,87,,19,,20,,51,128,"HK1003 -Blackpoint D2 - Rev.0E DD30092021;Modules_from_ZIN107;Modules_from_ZIN107"
1.1.1-42,SI----P3A92,"(RFS) READY FOR SHIPMENT MEDIUM LEAD SUPPORT ITEMS (100%)",5121,"HK1003-Rev.0E-3",TT_FinMile,"57050",-,-,-,0,TK_NotStart,01/10/2021,,01/10/2021,,"SI----P3A93 FF","SI----P3A93","SI----P4A27 FS","SI----P4A27",60,,60,,14,,14,,30,616,"HK1003 -Blackpoint D2 - Rev.0E DD30092021;Modules_from_ZIN107;Modules_from_ZIN107"
1.1.1-43,SI20---3B52,"SKID ASSEMBLY FOR SHIPMENT LOT 3",5121,"HK1003-Rev.0E-3",TT_Task,"57050",-,-,-,0,TK_NotStart,03/03/2022,,27/04/2022,,"SI20---3G78 FS,SI----P4A27 FS,SI20---4B31 FS,SI20---3M28 FS,SI20---3B11 FS,SI20---3B13 FS,SI20---3G80& FS,SI20---3B51 FS,SI20---3B99 FF","SI20---3G78,SI----P4A27,SI20---4B31,SI20---3M28,SI20---3B11,SI20---3B13,SI20---3G80&,SI20---3B51,SI20---3B99","SI20UPY3M31# FF,SI20---3M72 FS","SI20UPY3M31#,SI20---3M72",82,,90,,19,,21,,51,952,"HK1003 -Blackpoint D2 - Rev.0E DD30092021;Modules_from_ZIN107;Modules_from_ZIN107"
1.1.1-44,SI20---3B51,"PREFABRICATION OF ITEMS FOR SHIPMENT LOT 3",5121,"HK1003-Rev.0E-3",TT_Task,"57050",-,-,-,0,TK_NotStart,10/11/2021,,02/03/2022,,"SI---1P2A555 FS,SI---1P2A556 FS,SI20---3G75& FS,SI-----3H34 FS,SI20---3B31 FS,SI20---3G26 FS,SI20---3M105 FS,SI20---3M31 FS,SI20---3M30 FS,SI20---2M26 SF,SI20---3B11 FF,SI20---3B09 FF,SI20---3M15 FF,SI20---3B44 SS,SI20---3M14 FS,SI20---2M25 FS,SI----P3I30 FS","SI---1P2A555,SI---1P2A556,SI20---3G75&,SI-----3H34,SI20---3B31,SI20---3G26,SI20---3M105,SI20---3M31,SI20---3M30,SI20---2M26,SI20---3B11,SI20---3B09,SI20---3M15,SI20---3B44,SI20---3M14,SI20---2M25,SI----P3I30","SI20---3M86 FS,SI20---3B95 SS,SI20---3B52 FS,SI20---3B99 FS,SI20---3M121 FS","SI20---3M86,SI20---3B95,SI20---3B52,SI20---3B99,SI20---3M121",66,,82,,15,,19,,37,952,"HK1003 -Blackpoint D2 - Rev.0E DD30092021;Modules_from_ZIN107;Modules_from_ZIN107"
1.1.1-45,SI20---3B45,"SKID ASSEMBLY FOR SHIPMENT LOT 2",5121,"HK1003-Rev.0E-3",TT_Task,"57050",-,-,-,0,TK_NotStart,04/02/2022,,31/03/2022,,"SI20---3G78 FS,SI----P4A27 FS,SI20---4A25 FS,SI20---3M28 FS,SI20---3B10 FS,SI20---3B44 FS,SI20PGB2B05 FS,SI20PGB2D05 FS,SI20PGB2C05 FS,SI20PCB2B05 FS,SI20LCA2B05 FS,SI20---2M24 FS,SI20---3G79& FS","SI20---3G78,SI----P4A27,SI20---4A25,SI20---3M28,SI20---3B10,SI20---3B44,SI20PGB2B05,SI20PGB2D05,SI20PGB2C05,SI20PCB2B05,SI20LCA2B05,SI20---2M24,SI20---3G79&","SI20UMC3M37# FF,SI20---3M71 FS,SI20LAC3M55# FF,SI20LCA3M38# FF,SI20PGB3M31# FF,SI20PGB3M40# FF,SI20PCB3M55# FF,SI20---4M11 FF","SI20UMC3M37#,SI20---3M71,SI20LAC3M55#,SI20LCA3M38#,SI20PGB3M31#,SI20PGB3M40#,SI20PCB3M55#,SI20---4M11",78,,86,,18,,20,,48,208,"HK1003 -Blackpoint D2 - Rev.0E DD30092021;Modules_from_ZIN107;Modules_from_ZIN107"
1.1.1-46,SI20---3B44,"PREFABRICATION OF ITEMS FOR SHIPMENT LOT 2",5121,"HK1003-Rev.0E-3",TT_Task,"57050",-,-,-,0,TK_NotStart,08/10/2021,,03/02/2022,,"SI---1P2A523 FS,SI---1P2A549 FS,SI---1P2H528 FS,SI---1P2H530 FS,SI20---3G73& FS,SI-----3H34 FS,SI20---3B31 FS,SI20---3G26 FS,SI20---3M105 FS,SI20---3M31 FS,SI20---3M30 FS,SI20---3B07 FF,SI20---3B06 FF,SI20---3M10 FS,SI20---3M11 FF,SI20-1P340 SS,SI20---2M23 FS,SI----P3I30 FS","SI---1P2A523,SI---1P2A549,SI---1P2H528,SI---1P2H530,SI20---3G73&,SI-----3H34,SI20---3B31,SI20---3G26,SI20---3M105,SI20---3M31,SI20---3M30,SI20---3B07,SI20---3B06,SI20---3M10,SI20---3M11,SI20-1P340,SI20---2M23,SI----P3I30","SI20---3M85 FS,SI20---3-71 FS,SI20---3B51 SS,SI20---3B45 FS,SI20---3B94 SS,SI20---3M117 FS","SI20---3M85,SI20---3-71,SI20---3B51,SI20---3B45,SI20---3B94,SI20---3M117",61,,78,,14,,18,,32,208,"HK1003 -Blackpoint D2 - Rev.0E DD30092021;Modules_from_ZIN107;Modules_from_ZIN107"
1.1.1-47,SI20---3B37,"SKID ASSEMBLY FOR SHIPMENT LOT 1",5121,"HK1003-Rev.0E-3",TT_Task,"57050",-,-,-,0,TK_NotStart,06/01/2022,,02/03/2022,,"SI20---3G78 FS,SI----P4A27 FS,SI20---4A25 FS,SI20---3M28 FS,SI20---3B26 FS,SI20-1P340 FS,SI20LDK2B05 FS,SI20---3B93 FF,SI20---2M22 FS,SI20---3G77& FS,SI20---3B05 FS","SI20---3G78,SI----P4A27,SI20---4A25,SI20---3M28,SI20---3B26,SI20-1P340,SI20LDK2B05,SI20---3B93,SI20---2M22,SI20---3G77&,SI20---3B05","SI20UMC3M31# FF,SI20---3M84 FF,SI20MAL3M31# FF,SI20MAW3M31# FF,SI20MAW3M38# FF,SI20UMY3M31# FF,SI20MAG3M31# FF,SI20---3M70 FS,SI20UEY3-20# FF,SI20ULY3M55# FF,SI20LDK3M55# FF,SI20---4M10 FF","SI20UMC3M31#,SI20---3M84,SI20MAL3M31#,SI20MAW3M31#,SI20MAW3M38#,SI20UMY3M31#,SI20MAG3M31#,SI20---3M70,SI20UEY3-20#,SI20ULY3M55#,SI20LDK3M55#,SI20---4M10",74,,82,,17,,19,,44,240,"HK1003 -Blackpoint D2 - Rev.0E DD30092021;Modules_from_ZIN107;Modules_from_ZIN107"
1.1.1-48,SI20-1P340,"PREFABRICATION OF ITEMS FOR SHIPMENT LOT 1",5121,"HK1003-Rev.0E-3",TT_Task,"57050",-,-,-,18,TK_Active,08/09/2021,08/09/2021,05/01/2022,,"SI---1P2A525 FS,SI---1P2A543 FS,SI---1P2H528 FS,SI---1P2H530 FS,SI20---3G71& FS,SI-----3H34 FF,SI20---3B31 FF,SI20---3G26 FS,SI20---3M105 FF,SI20---3M31 FF,SI20---3M30 FS,SI20---3B04 FF,SI20---2M28 FS,SI20---2M27 FS,SI20---3M06 FS,SI--2M-31 FF,SI20---3M07 FF,SI----P3I30 FS,SI--2M-11 FS","SI---1P2A525,SI---1P2A543,SI---1P2H528,SI---1P2H530,SI20---3G71&,SI-----3H34,SI20---3B31,SI20---3G26,SI20---3M105,SI20---3M31,SI20---3M30,SI20---3B04,SI20---2M28,SI20---2M27,SI20---3M06,SI--2M-31,SI20---3M07,SI----P3I30,SI--2M-11","SI20---3B12 FS,SI20---3B44 SS,SI20---3B37 FS,SI20-1P343 SS,SI20---3M119 FS","SI20---3B12,SI20---3B44,SI20---3B37,SI20-1P343,SI20---3M119",57,57,74,,13,13,17,,29,200,"HK1003 -Blackpoint D2 - Rev.0E DD30092021;Modules_from_ZIN107;Modules_from_ZIN107"
1.1.1-49,SI20---3B33,"FABRICATION LONG LEAD SUPPORTS FOR SHIPMENT LOT 3 AND LOT 4",5121,"HK1003-Rev.0E-3",TT_Task,"57050",-,-,-,54,TK_Active,24/07/2021,24/07/2021,26/11/2021,,"SI-----2H85 FS","SI-----2H85","SI20---3B86 FS","SI20---3B86",51,51,68,,11,11,16,,22,1328,"HK1003 -Blackpoint D2 - Rev.0E DD30092021;Modules_from_ZIN107;Modules_from_ZIN107"
1.1.1-50,SI20---4B31,"TRANSPORT LONG LEAD SUPPORTS FOR SHIPMENT LOT 3 AND LOT 4",5121,"HK1003-Rev.0E-3",TT_Task,"57050",-,-,-,0,TK_NotStart,27/11/2021,,14/01/2022,,"SI20---3B86 FS","SI20---3B86","SI20---3B52 FS","SI20---3B52",69,,75,,16,,17,,39,1328,"HK1003 -Blackpoint D2 - Rev.0E DD30092021;Modules_from_ZIN107;Modules_from_ZIN107"
1.1.1-51,SI20---3B86,"(RFS) READY FOR SHIPMENT LONG LEAD SUPPORTS FOR SHIPMENT LOT 3 AND LOT 4",5121,"HK1003-Rev.0E-3",TT_FinMile,"57050",-,-,-,0,TK_NotStart,26/11/2021,,26/11/2021,,"SI20---3B33 FS","SI20---3B33","SI20---4B31 FS","SI20---4B31",68,,68,,16,,16,,39,1328,"HK1003 -Blackpoint D2 - Rev.0E DD30092021;Modules_from_ZIN107;Modules_from_ZIN107"
1.1.1-52,SI20---3B31,"PROCUREMENT MEDIUM LEAD ITEMS 2 (95%)",5121,"HK1003-Rev.0E-3",TT_Task,"57050",-,-,-,100,TK_Complete,12/06/2021,12/06/2021,15/09/2021,15/09/2021,"SI20---2B85 FS","SI20---2B85","SI20---3B51 FS,SI20---3B44 FS,SI20-1P340 FF","SI20---3B51,SI20---3B44,SI20-1P340",45,45,58,58,10,10,13,13,17,,"HK1003 -Blackpoint D2 - Rev.0E DD30092021;Modules_from_ZIN107;Modules_from_ZIN107"
1.1.1-53,SI20---2B85,"ORDER MTO MEDIUM LEAD ITEMS 2 (95%)",5121,"HK1003-Rev.0E-3",TT_Mile,"57050",-,-,-,100,TK_Complete,12/06/2021,12/06/2021,12/06/2021,12/06/2021,"SI-----2F85 SS,SI-----2F85 FS,SI---2P2-10 FS,SI---1P2-10 FS,SI---3P2-10 FS,SI---4P2-10 FS,SI---5P2-10 FS,SI--PAB2-10 FS,SI--LAB2-10 FS,SI--LB-2-10 FS,SI--EKG2-10 FS,SI--MA-2-10 FS,SI--MA-2E10 FS","SI-----2F85,SI-----2F85,SI---2P2-10,SI---1P2-10,SI---3P2-10,SI---4P2-10,SI---5P2-10,SI--PAB2-10,SI--LAB2-10,SI--LB-2-10,SI--EKG2-10,SI--MA-2-10,SI--MA-2E10","SI20---3B31 FS,SI-----2H85 FS","SI20---3B31,SI-----2H85",45,45,45,45,10,10,10,10,17,,"HK1003 -Blackpoint D2 - Rev.0E DD30092021;Modules_from_ZIN107;Modules_from_ZIN107"
1.1.1-54,SI20---2B50,"DETAIL DESIGN BB STEELWORK LOT 3",5121,"HK1003-Rev.0E-3",TT_Task,"57050",-,-,-,100,TK_Complete,27/05/2021,27/05/2021,02/08/2021,02/08/2021,"SI-----3M63 FS,SI-----2H60 SS","SI-----3M63,SI-----2H60","SI20---3M27 FS,SI--2M-23 FS","SI20---3M27,SI--2M-23",42,42,52,52,9,9,12,12,14,,"HK1003 -Blackpoint D2 - Rev.0E DD30092021;Modules_from_ZIN107;Modules_from_ZIN107"
1.1.1-55,SI20---2B43,"DETAIL DESIGN BB STEELWORK LOT 2",5121,"HK1003-Rev.0E-3",TT_Task,"57050",-,-,-,100,TK_Complete,02/06/2021,02/06/2021,04/07/2021,04/07/2021,"SI-----2G60 SS,SI-----3M62 FS","SI-----2G60,SI-----3M62","SI20---3M26 SS,SI--2M-22 FS","SI20---3M26,SI--2M-22",43,43,48,48,10,10,11,11,15,,"HK1003 -Blackpoint D2 - Rev.0E DD30092021;Modules_from_ZIN107;Modules_from_ZIN107"
1.1.1-56,SI20---3B26,"DELIVERY OF COMPONENTS FOR SHIPMENT LOT 1",5121,"HK1003-Rev.0E-3",TT_FinMile,"57050",-,-,-,0,TK_NotStart,10/12/2021,,10/12/2021,,"SI20LDK4B41 FS","SI20LDK4B41","SI20---3B37 FS","SI20---3B37",70,,70,,16,,16,,42,240,"HK1003 -Blackpoint D2 - Rev.0E DD30092021;Modules_from_ZIN107;Modules_from_ZIN107"
1.1.1-57,SI20PGB2C05,"ERECTION MANUALS TO SKIDDER HEAT EXCHANGER PGB",5121,"HK1003-Rev.0E-3",TT_Mile,"57050",-,-,-,100,TK_Complete,02/08/2021,02/08/2021,02/08/2021,02/08/2021,"SI20PGB3C41 SS","SI20PGB3C41","SI20PGB6M16 FS,SI20---3B45 FS,SI20PGB3C80 FS","SI20PGB6M16,SI20---3B45,SI20PGB3C80",52,52,52,52,12,12,12,12,24,,"HK1003 -Blackpoint D2 - Rev.0E DD30092021;Modules_from_ZIN107;Modules_from_ZIN107"
1.1.1-58,SI20PGB3C25,"DETAIL DESIGN HEAT EXCHANGER 20PGB",5121,"HK1003-Rev.0E-3",TT_Task,"57050",-,-,-,100,TK_Complete,12/04/2021,12/04/2021,25/04/2021,25/04/2021,"SI--PGB2C80 FF,SI--PGB2C80 FS","SI--PGB2C80,SI--PGB2C80","SI20PGB3C41 FS","SI20PGB3C41",36,36,38,38,8,8,8,8,8,,"HK1003 -Blackpoint D2 - Rev.0E DD30092021;Modules_from_ZIN107;Modules_from_ZIN107"
1.1.1-59,SI20PGB2C86,"DESIGN DATA SHEETS HEAT EXCHANGER PGB",5121,"HK1003-Rev.0E-3",TT_Task,"57050",-,-,-,100,TK_Complete,18/01/2021,18/01/2021,24/01/2021,24/01/2021,"SI--P--2-05 SS,SI--HA-2A86 FS,SI-----1-05 FS","SI--P--2-05,SI--HA-2A86,SI-----1-05","SI--PGB2C75 FF","SI--PGB2C75",24,24,25,25,5,5,5,5,2,,"HK1003 -Blackpoint D2 - Rev.0E DD30092021;Modules_from_ZIN107;Modules_from_ZIN107"
1.1.1-60,SI20PGB2D05,"ERECTION MANUALS TO SKIDDER  CCW EXPANSION TANK PGB",5121,"HK1003-Rev.0E-3",TT_Mile,"57050",-,-,-,0,TK_NotStart,11/01/2022,,11/01/2022,,"SI20PGB3D80 FS,SI20PGB4D25 FS","SI20PGB3D80,SI20PGB4D25","SI20PGB6M16 FS,SI20---3B45 FS","SI20PGB6M16,SI20---3B45",75,,75,,17,,17,,45,400,"HK1003 -Blackpoint D2 - Rev.0E DD30092021;Modules_from_ZIN107;Modules_from_ZIN107"
1.1.1-61,SI20PGB2D86,"DESIGN DATA SHEETS CCW EXPANSION TANK PGB",5121,"HK1003-Rev.0E-3",TT_Task,"57050",-,-,-,100,TK_Complete,25/03/2021,25/03/2021,31/03/2021,31/03/2021,"SI--G--2-20 FS,SI--P--2-05 FS,SI-----1-05 FS","SI--G--2-20,SI--P--2-05,SI-----1-05","SI--PGB2D75 FF","SI--PGB2D75",33,33,34,34,7,7,8,8,6,,"HK1003 -Blackpoint D2 - Rev.0E DD30092021;Modules_from_ZIN107;Modules_from_ZIN107"
1.1.1-62,SI20PGB3D25,"DETAIL DESIGN CCW EXPANSION TANK 20PGB",5121,"HK1003-Rev.0E-3",TT_Task,"57050",-,-,-,100,TK_Complete,07/08/2021,07/08/2021,13/08/2021,13/08/2021,"SI--PGB2D85 FS","SI--PGB2D85","SI20PGB3D33 FS","SI20PGB3D33",53,53,53,53,12,12,12,12,25,,"HK1003 -Blackpoint D2 - Rev.0E DD30092021;Modules_from_ZIN107;Modules_from_ZIN107"
1.1.1-63,SI20PGB2B05,"ERECTION MANUALS TO SKIDDER CCW PUMP PGB",5121,"HK1003-Rev.0E-3",TT_Mile,"57050",-,-,-,100,TK_Complete,31/07/2021,31/07/2021,31/07/2021,31/07/2021,"SI20PGB3B32 SS","SI20PGB3B32","SI20PGB6M16 FS,SI20---3B45 FS,SI20PGB3B80 FS","SI20PGB6M16,SI20---3B45,SI20PGB3B80",52,52,52,52,12,12,12,12,24,,"HK1003 -Blackpoint D2 - Rev.0E DD30092021;Modules_from_ZIN107;Modules_from_ZIN107"
1.1.1-64,SI20PGB2B87,"PROPOSAL PUMP CURVE FOR DESIGN C-V CCW PUMP PGB",5121,"HK1003-Rev.0E-3",TT_Mile,"57050",-,-,-,100,TK_Complete,23/04/2021,23/04/2021,23/04/2021,23/04/2021,"SI--PGB2B75 FS","SI--PGB2B75","SI--P--2I45 FS","SI--P--2I45",37,37,37,37,8,8,8,8,9,,"HK1003 -Blackpoint D2 - Rev.0E DD30092021;Modules_from_ZIN107;Modules_from_ZIN107"
1.1.1-65,SI20PGB2B86,"DESIGN DATA SHEETS CCW PUMP PGB",5121,"HK1003-Rev.0E-3",TT_Task,"57050",-,-,-,100,TK_Complete,17/01/2021,17/01/2021,30/01/2021,30/01/2021,"SI--P--2-05 SS,SI--HA-2A86 FS,SI--G--2-20 FS,SI-----1-05 FS","SI--P--2-05,SI--HA-2A86,SI--G--2-20,SI-----1-05","SI--PGB2B75 FF,SI--PGB2B80 FS","SI--PGB2B75,SI--PGB2B80",24,24,26,26,5,5,6,6,2,,"HK1003 -Blackpoint D2 - Rev.0E DD30092021;Modules_from_ZIN107;Modules_from_ZIN107"
1.1.1-66,SI20LDK2B90,"PROPOSAL PUMP CURVE FOR DESIGN C-V CONDENSATE POLISHING PUMP 20LDK",5121,"HK1003-Rev.0E-3",TT_Mile,"57050",-,-,-,100,TK_Complete,05/03/2021,05/03/2021,05/03/2021,05/03/2021,"SI20LDK2B86 FS,SI--LDK2B75 FS","SI20LDK2B86,SI--LDK2B75","SI--L--2I45 FS,SI--L--2I46 FS","SI--L--2I45,SI--L--2I46",30,30,30,30,7,7,7,7,5,,"HK1003 -Blackpoint D2 - Rev.0E DD30092021;Modules_from_ZIN107;Modules_from_ZIN107"
1.1.1-67,SI20LDK2B05,"ERECTION MANUALS AT SKIDDER CONDENSATE POLISHING PUMP 20LDK",5121,"HK1003-Rev.0E-3",TT_Mile,"57050",-,-,-,0,TK_NotStart,09/12/2021,,09/12/2021,,"SI20LDK3B81 FS","SI20LDK3B81","SI20LDK6M15 FS,SI20---3B10 FS,SI20---3B37 FS","SI20LDK6M15,SI20---3B10,SI20---3B37",70,,70,,16,,16,,41,240,"HK1003 -Blackpoint D2 - Rev.0E DD30092021;Modules_from_ZIN107;Modules_from_ZIN107"
1.1.1-68,SI20LDK2B86,"DESIGN DATA SHEETS CONDENSATE POLISHING PUMP 20LDK",5121,"HK1003-Rev.0E-3",TT_Task,"57050",-,-,-,100,TK_Complete,29/01/2021,29/01/2021,11/02/2021,11/02/2021,"SI--L--2-05 FS,SI--G--2-20 FS,SI--HA-2A86 FS","SI--L--2-05,SI--G--2-20,SI--HA-2A86","SI20LDK2B90 FS,SI--LDK2B75 FF,SI--LDK2B61 FS","SI20LDK2B90,SI--LDK2B75,SI--LDK2B61",25,25,27,27,6,6,6,6,3,,"HK1003 -Blackpoint D2 - Rev.0E DD30092021;Modules_from_ZIN107;Modules_from_ZIN107"
1.1.1-69,SI20LCA2B05,"ERECTION MANUALS AT SKIDDER CONDENSATE RECIRC.PUMP LCA51",5121,"HK1003-Rev.0E-3",TT_Mile,"57050",-,-,-,0,TK_NotStart,06/10/2021,,06/10/2021,,"SI20LCA3B39 SS","SI20LCA3B39","SI20LCA6M16 FS,SI20---3B45 FS,SI20LCA3B80 FS","SI20LCA6M16,SI20---3B45,SI20LCA3B80",61,,61,,14,,14,,31,208,"HK1003 -Blackpoint D2 - Rev.0E DD30092021;Modules_from_ZIN107;Modules_from_ZIN107"
1.1.1-70,SI20LCA2B87,"DESIGN DATA SHEETS CONDENSATE RECIRC.PUMP LCA51",5121,"HK1003-Rev.0E-3",TT_Task,"57050",-,-,-,100,TK_Complete,30/01/2021,30/01/2021,12/02/2021,12/02/2021,"SI--L--2-05 FS,SI--HA-2A86 FS,SI-----1-05 FS","SI--L--2-05,SI--HA-2A86,SI-----1-05","SI--LCA2B75 SS","SI--LCA2B75",26,26,27,27,6,6,6,6,3,,"HK1003 -Blackpoint D2 - Rev.0E DD30092021;Modules_from_ZIN107;Modules_from_ZIN107"
1.1.1-71,SI20LAC2B05,"ERECTION MANUALS ON SITE FEEDWATER PUMP 20LAC",5121,"HK1003-Rev.0E-3",TT_Mile,"57050",-,-,-,0,TK_NotStart,26/05/2022,,26/05/2022,,"SI20LAC3B80 FS","SI20LAC3B80","SI20LAC7B15 FS,SI20LAC6B15 FS","SI20LAC7B15,SI20LAC6B15",94,,94,,22,,22,,66,240,"HK1003 -Blackpoint D2 - Rev.0E DD30092021;Modules_from_ZIN107;Modules_from_ZIN107"
1.1.1-72,SI20LAC2B86,"DESIGN DATA SHEETS FEEDWATER PUMP 20LAC",5121,"HK1003-Rev.0E-3",TT_Task,"57050",-,-,-,100,TK_Complete,20/01/2021,20/01/2021,02/02/2021,02/02/2021,"SI--HA-2A86 FS,SI--LAC2B75 SS","SI--HA-2A86,SI--LAC2B75","SI--LAC2B80 FS","SI--LAC2B80",24,24,26,26,5,5,6,6,2,,"HK1003 -Blackpoint D2 - Rev.0E DD30092021;Modules_from_ZIN107;Modules_from_ZIN107"
1.1.1-73,SI20PDB2-05,"ERECTION MANUALS TO SKIDDER   DEBRIS FILTER 20PDB",5121,"HK1003-Rev.0E-3",TT_Mile,"57050",-,-,-,0,TK_NotStart,14/12/2021,,14/12/2021,,"SI20PDB3B80 FS","SI20PDB3B80","SI20PDB4B14 FS","SI20PDB4B14",71,,71,,16,,16,,42,208,"HK1003 -Blackpoint D2 - Rev.0E DD30092021;Modules_from_ZIN107;Modules_from_ZIN107"
1.1.1-74,SI20PDB3-25,"DETAIL DESIGN DEBRIS FILTER 20PDB",5121,"HK1003-Rev.0E-3",TT_Task,"57050",-,-,-,100,TK_Complete,04/05/2021,04/05/2021,15/06/2021,15/06/2021,"SI--PDB2B85 FS","SI--PDB2B85","SI--PDB2B65 SF,SI--PDB2B60 SF,SI20PDB3B25 FS","SI--PDB2B65,SI--PDB2B60,SI20PDB3B25",39,39,45,45,9,9,10,10,11,,"HK1003 -Blackpoint D2 - Rev.0E DD30092021;Modules_from_ZIN107;Modules_from_ZIN107"
1.1.1-75,SI-----2E66,"PREPARATION OF MTO FOR LONG LEAD PIPING",5121,"HK1003-Rev.0E-3",TT_Task,"57050",-,-,-,100,TK_Complete,15/01/2021,15/01/2021,11/03/2021,11/03/2021,"SI20---2M55 FS,SI20---2M54 FS,SI-----2M08 SS,SI-----1-05 FS","SI20---2M55,SI20---2M54,SI-----2M08,SI-----1-05","SI-----2E87 FS,SI-----2E85 FS,SI-----2M30 FS,SI20---3M30 FS","SI-----2E87,SI-----2E85,SI-----2M30,SI20---3M30",23,23,31,31,5,5,7,7,2,,"HK1003 -Blackpoint D2 - Rev.0E DD30092021;Modules_from_ZIN107;Modules_from_ZIN107"
1.1.1-76,SI20---3M30,"PROCUREMENT LONG LEAD ITEMS PART 1 (80%)",5121,"HK1003-Rev.0E-3",TT_Task,"57050",-,-,-,100,TK_Complete,19/03/2021,19/03/2021,07/09/2021,07/09/2021,"SI-----2E87 FS,SI-----2E66 FS,SI-----2E87 SS,SI-----2E95 FS","SI-----2E87,SI-----2E66,SI-----2E87,SI-----2E95","SI20---3B51 FS,SI20---3B44 FS,SI20-1P340 FS","SI20---3B51,SI20---3B44,SI20-1P340",32,32,57,57,7,7,13,13,6,,"HK1003 -Blackpoint D2 - Rev.0E DD30092021;Modules_from_ZIN107;Modules_from_ZIN107"
1.1.1-77,SI-----2E85,"CONTRACT INTO FORCE PIPING & BUILDING BLOCK / ORDER MTO LONG LEAD ITEMS (80%) & VALVES (INCL. CONTRACTUAL MTO)",5121,"HK1003-Rev.0E-3",TT_Mile,"57050",-,-,-,100,TK_Complete,01/05/2021,01/05/2021,01/05/2021,01/05/2021,"SI-----1-05 SS,SI-----2E66 FS,SI-----2E89 FS","SI-----1-05,SI-----2E66,SI-----2E89","SI----P3I21 SS,SI-----2E88 SS,SI-----2E93 FS","SI----P3I21,SI-----2E88,SI-----2E93",39,39,39,39,9,9,9,9,10,,"HK1003 -Blackpoint D2 - Rev.0E DD30092021;Modules_from_ZIN107;Modules_from_ZIN107"
1.1.1-78,SI20---3M31,"PROCUREMENT LONG LEAD ITEMS PART 2 (95%)",5121,"HK1003-Rev.0E-3",TT_Task,"57050",-,-,-,100,TK_Complete,23/04/2021,23/04/2021,07/09/2021,07/09/2021,"SI-----2E86 FS","SI-----2E86","SI20---3B51 FS,SI20---3B44 FS,SI20-1P340 FF","SI20---3B51,SI20---3B44,SI20-1P340",37,37,57,57,8,8,13,13,9,,"HK1003 -Blackpoint D2 - Rev.0E DD30092021;Modules_from_ZIN107;Modules_from_ZIN107"
1.1.1-79,SI-----2E86,"ORDER MTO LONG LEAD ITEMS (95%)",5121,"HK1003-Rev.0E-3",TT_Mile,"57050",-,-,-,100,TK_Complete,23/04/2021,23/04/2021,23/04/2021,23/04/2021,"SI-----2E89 SS,SI-----2E95 FS","SI-----2E89,SI-----2E95","SI20---3M31 FS,SI-P2I-1 FS,SI-----2E88 FS","SI20---3M31,SI-P2I-1,SI-----2E88",37,37,37,37,8,8,8,8,9,,"HK1003 -Blackpoint D2 - Rev.0E DD30092021;Modules_from_ZIN107;Modules_from_ZIN107"
1.1.1-80,SI20BZP7-15,"ERECTION CABLE TRAYS FOR 20ULY00Y INCL. SCAFOLDING",5121,"HK1003-Rev.0E-3",TT_Task,"57050",-,-,-,0,TK_NotStart,20/04/2022,,17/05/2022,,"SI--PEE7-20 FS,SI--2227-68 FS,SI--BZP2-05 FS,SI--BZP4B40 FS,SI20ULY4M40 FS,SI20BZP7-26 FS,SI--PEE7-20 SS","SI--PEE7-20,SI--2227-68,SI--BZP2-05,SI--BZP4B40,SI20ULY4M40,SI20BZP7-26,SI--PEE7-20","SI20BZP7B10# FF,SI20BZP7B10# SS,SI20UMY6M10 FS,SI20UMY6M10 FF,SI20BZK7-190 FS","SI20BZP7B10#,SI20BZP7B10#,SI20UMY6M10,SI20UMY6M10,SI20BZK7-190",89,,93,,20,,21,,58,144,"HK1003 -Blackpoint D2 - Rev.0E DD30092021;Modules_from_ZIN107;Modules_from_ZIN107"
1.1.1-81,SI20PGB3M81,"(RFS) READY FOR SHIPMENT MODULE 20PGB20Y",5121,"HK1003-Rev.0E-3",TT_FinMile,"57050",-,-,-,0,TK_NotStart,31/03/2022,,31/03/2022,,"SI20PGB4M11 FS","SI20PGB4M11","SI20PGB4M26 FS","SI20PGB4M26",86,,86,,20,,20,,54,1352,"HK1003 -Blackpoint D2 - Rev.0E DD30092021;Modules_from_ZIN107;Modules_from_ZIN107"
1.1.1-82,SI20PGB3M80,"(RFS) READY FOR SHIPMENT MODULE 20PGB10Y",5121,"HK1003-Rev.0E-3",TT_FinMile,"57050",-,-,-,0,TK_NotStart,31/03/2022,,31/03/2022,,"SI20PGB4M10 FS","SI20PGB4M10","SI20PGB4M25 FS","SI20PGB4M25",86,,86,,20,,20,,54,1320,"HK1003 -Blackpoint D2 - Rev.0E DD30092021;Modules_from_ZIN107;Modules_from_ZIN107"
1.1.1-83,SI20MB-3B80,"(RFS) READY FOR SHIPMENT GT ACCESSORY EQUIPMENT / CCR / IN-LINE COMPONENTS GT-PIPING MB",5121,"HK1003-Rev.0E-3",TT_FinMile,"57050",-,-,-,0,TK_NotStart,29/04/2022,,29/04/2022,,"SI20MB-4-12 FS","SI20MB-4-12","SI20MB-4E25 FS","SI20MB-4E25",90,,90,,21,,21,,60,504,"HK1003 -Blackpoint D2 - Rev.0E DD30092021;Modules_from_ZIN107;Modules_from_ZIN107"
1.1.1-84,SP20MB-3B80,"(RFS) READY FOR SHIPMENT GT SUPPORTS 20MB-",5121,"HK1003-Rev.0E-3",TT_FinMile,"57050",-,-,-,0,TK_NotStart,29/04/2022,,29/04/2022,,"SP20MB-4-10 FS","SP20MB-4-10","SI20MBA4-27 FS","SI20MBA4-27",90,,90,,21,,21,,60,240,"HK1003 -Blackpoint D2 - Rev.0E DD30092021;Modules_from_ZIN107;Modules_from_ZIN107"
1.1.1-85,SP--MB-3B80,"(RFS) READY FOR SHIPMENTGT INSULATION MB-",5121,"HK1003-Rev.0E-3",TT_FinMile,"57050",-,-,-,0,TK_NotStart,23/04/2022,,23/04/2022,,"SP--MB-4-10 FS","SP--MB-4-10","SI20MBA4G25 FS","SI20MBA4G25",90,,90,,21,,21,,59,560,"HK1003 -Blackpoint D2 - Rev.0E DD30092021;Modules_from_ZIN107;Modules_from_ZIN107"
1.1.1-86,SI20BAC3B80,"(RFS) READY FOR SHIPMENT GEN. CIRCUIT BREAKER 20BAC",5121,"HK1003-Rev.0E-3",TT_FinMile,"57050",-,-,-,0,TK_NotStart,19/06/2022,,19/06/2022,,"SI20BAC4-10 FS","SI20BAC4-10","SI--BAC2-05 FS,SI20BAC4-25 FS","SI--BAC2-05,SI20BAC4-25",98,,98,,22,,22,,70,352,"HK1003 -Blackpoint D2 - Rev.0E DD30092021;Modules_from_ZIN107;Modules_from_ZIN107"
1.1.1-87,SI20BBT3B80,"(RFS) READY FOR SHIPMENT AUX. TRANSFORMER 20BBT",5121,"HK1003-Rev.0E-3",TT_FinMile,"57050",-,-,-,0,TK_NotStart,20/05/2022,,20/05/2022,,"SI20BBT4-10 FF,SI20BBT4-10 FS","SI20BBT4-10,SI20BBT4-10","SI20BBT4-25 FS","SI20BBT4-25",93,,93,,21,,21,,65,1072,"HK1003 -Blackpoint D2 - Rev.0E DD30092021;Modules_from_ZIN107;Modules_from_ZIN107"
1.1.1-88,SI20BAA3B80,"(RFS) READY FOR SHIPMENT IPB 20BAA",5121,"HK1003-Rev.0E-3",TT_FinMile,"57050",-,-,-,0,TK_NotStart,04/07/2022,,04/07/2022,,"SI20BAA4-10 FS","SI20BAA4-10","SI--BAA2-05 FS,SI20BAA4-25 FS","SI--BAA2-05,SI20BAA4-25",100,,100,,23,,23,,72,352,"HK1003 -Blackpoint D2 - Rev.0E DD30092021;Modules_from_ZIN107;Modules_from_ZIN107"
1.1.1-89,SP20MBL3B80,"(RFS) READY FOR SHIPMENT AIR INTAKE SYSTEM 20MBL",5121,"HK1003-Rev.0E-3",TT_FinMile,"57050",-,-,-,0,TK_NotStart,18/05/2022,,18/05/2022,,"SP20MBL4-10 FS","SP20MBL4-10","SI20MBL6-05 FS,SI20MBL4-25 FS","SI20MBL6-05,SI20MBL4-25",93,,93,,21,,21,,65,184,"HK1003 -Blackpoint D2 - Rev.0E DD30092021;Modules_from_ZIN107;Modules_from_ZIN107"
1.1.1-90,SI20---2M26,"FINAL SHOP DRAWINGS FOR MODULES LOT 3",5121,"HK1003-Rev.0E-3",TT_Mile,"57050",-,-,-,0,TK_NotStart,08/12/2021,,08/12/2021,,"SI20---3M15 FS","SI20---3M15","SI20---3B51 SF","SI20---3B51",70,,70,,16,,16,,41,1632,"HK1003 -Blackpoint D2 - Rev.0E DD30092021;Modules_from_ZIN107;Modules_from_ZIN107"
1.1.1-91,SI20---2M24,"FINAL SHOP DRAWINGS FOR MODULES LOT 2",5121,"HK1003-Rev.0E-3",TT_Mile,"57050",-,-,-,0,TK_NotStart,05/11/2021,,05/11/2021,,"SI20---3M11 FS","SI20---3M11","SI20---3B45 FS","SI20---3B45",65,,65,,15,,15,,37,480,"HK1003 -Blackpoint D2 - Rev.0E DD30092021;Modules_from_ZIN107;Modules_from_ZIN107"
1.1.1-92,SI20---2M22,"SUBMISSION OF OTHER 50% OF FABRICATION DOCUMENTS FOR SHIPMENT LOT 1",5121,"HK1003-Rev.0E-3",TT_Mile,"57050",-,-,-,0,TK_NotStart,06/10/2021,,06/10/2021,,"SI20---3M07 FS","SI20---3M07","SI20---3B37 FS","SI20---3B37",61,,61,,14,,14,,31,536,"HK1003 -Blackpoint D2 - Rev.0E DD30092021;Modules_from_ZIN107;Modules_from_ZIN107"
1.1.1-93,SI20PGB6M15,"ERECTION MODULE 20PGB10Y (PGB10YE / PGB10YD)",5121,"HK1003-Rev.0E-3",TT_Task,"57050",-,-,-,0,TK_NotStart,02/06/2022,,08/06/2022,,"SI20PGB4M40 FS,SI20UMC6M16 SS,SI20UMC5E48 FS","SI20PGB4M40,SI20UMC6M16,SI20UMC5E48","SI20PCB6M10 FS,SI20PGB6M40 FS,SI20PCB6M16 SS,SI20UMC6B-35 FS","SI20PCB6M10,SI20PGB6M40,SI20PCB6M16,SI20UMC6B-35",95,,96,,22,,22,,68,1104,"HK1003 -Blackpoint D2 - Rev.0E DD30092021;Modules_from_ZIN107;Modules_from_ZIN107"
1.1.1-94,SI20PGB4M40,"(OTD-OS) ON SITE MODULE 20PGB10Y",5121,"HK1003-Rev.0E-3",TT_FinMile,"57050",-,-,-,0,TK_NotStart,01/06/2022,,01/06/2022,,"SI20PGB4M25 FS,SI20---4M26 FS,SI20PGB2B92 FS","SI20PGB4M25,SI20---4M26,SI20PGB2B92","SI20PGB6M15 FS","SI20PGB6M15",95,,95,,22,,22,,67,1104,"HK1003 -Blackpoint D2 - Rev.0E DD30092021;Modules_from_ZIN107;Modules_from_ZIN107"
1.1.1-95,SI20PGB4M22,"DELIVERY OF COMPONENTS MODULE_CCW PUMP / EXPANSION TANK",5121,"HK1003-Rev.0E-3",TT_FinMile,"57050",-,-,-,0,TK_NotStart,10/01/2022,,10/01/2022,,"SI20PGB4B41 FS,SI20PGB4D42 FS","SI20PGB4B41,SI20PGB4D42","SI20---3B13 FS","SI20---3B13",75,,75,,17,,17,,44,1240,"HK1003 -Blackpoint D2 - Rev.0E DD30092021;Modules_from_ZIN107;Modules_from_ZIN107"
1.1.1-96,SI20PGB4M25,"TRANSPORT MODULE 20PGB10Y",5121,"HK1003-Rev.0E-3",TT_Task,"57050",-,-,-,0,TK_NotStart,28/04/2022,,01/06/2022,,"SI20PGB3M80 FS","SI20PGB3M80","SI20PGB4M40 FS","SI20PGB4M40",90,,95,,21,,22,,59,1104,"HK1003 -Blackpoint D2 - Rev.0E DD30092021;Modules_from_ZIN107;Modules_from_ZIN107"
1.1.1-97,SI-----3M63,"BASIC DESIGN BB STEELWORK LOT 3",5121,"HK1003-Rev.0E-3",TT_Task,"57050",-,-,-,100,TK_Complete,21/04/2021,21/04/2021,26/05/2021,26/05/2021,"SI-----2M44 FS","SI-----2M44","SI20---2B50 FS,SI-----2H60 FS","SI20---2B50,SI-----2H60",37,37,42,42,8,8,9,9,9,,"HK1003 -Blackpoint D2 - Rev.0E DD30092021;Modules_from_ZIN107;Modules_from_ZIN107"
1.1.1-98,SI-----2M44,"INPUTS FOR DETAIL DESIGN REQUIRED LOT3",5121,"HK1003-Rev.0E-3",TT_Mile,"57050",-,-,-,100,TK_Complete,21/04/2021,21/04/2021,21/04/2021,21/04/2021,"SI-----2M95 FS,SI-----3M62 SS,SI-----2M18 SS","SI-----2M95,SI-----3M62,SI-----2M18","SI-----3M63 FS","SI-----3M63",37,37,37,37,8,8,8,8,9,,"HK1003 -Blackpoint D2 - Rev.0E DD30092021;Modules_from_ZIN107;Modules_from_ZIN107"
1.1.1-99,SI-----3M62,"BASIC DESIGN BB STEELWORK LOT 2",5121,"HK1003-Rev.0E-3",TT_Task,"57050",-,-,-,100,TK_Complete,24/03/2021,24/03/2021,01/06/2021,01/06/2021,"SI-----2M40 FS","SI-----2M40","SI-----2M44 SS,SI-----2G60 FS,SI20---2B43 FS","SI-----2M44,SI-----2G60,SI20---2B43",33,33,43,43,7,7,10,10,6,,"HK1003 -Blackpoint D2 - Rev.0E DD30092021;Modules_from_ZIN107;Modules_from_ZIN107"
1.1.1-100,SI-----2M40,"INPUTS FOR DETAIL DESIGN REQUIRED LOT 2",5121,"HK1003-Rev.0E-3",TT_Mile,"57050",-,-,-,100,TK_Complete,24/03/2021,24/03/2021,24/03/2021,24/03/2021,"SI-----2M96 FS,SI-----2M95 FS,SI-----3M61 SS,SI-----2M18 SS","SI-----2M96,SI-----2M95,SI-----3M61,SI-----2M18","SI-----3M62 FS","SI-----3M62",33,33,33,33,7,7,7,7,6,,"HK1003 -Blackpoint D2 - Rev.0E DD30092021;Modules_from_ZIN107;Modules_from_ZIN107"
1.1.1-101,SI20---3B88,"(RFS) READY FOR SHIPMENT GT SPECIAL TOOLS 20MB-",5121,"HK1003-Rev.0E-3",TT_FinMile,"57050",-,-,-,0,TK_NotStart,29/04/2022,,29/04/2022,,"SI20---4-17 FS","SI20---4-17","SI20MBA4-26 FF,SI20MBA4-26 FS","SI20MBA4-26,SI20MBA4-26",90,,90,,21,,21,,60,184,"HK1003 -Blackpoint D2 - Rev.0E DD30092021;Modules_from_ZIN107;Modules_from_ZIN107"
1.1.1-102,SI20---3M82,"(RFS) READY FOR SHIPMENT FOR SHIPMENT LOT 3",5121,"HK1003-Rev.0E-3",TT_FinMile,"57050",-,-,-,0,TK_NotStart,02/05/2022,,02/05/2022,,"SI20---3M86 FS,SI20---4M12 FS","SI20---3M86,SI20---4M12","SI20---4M27 FS","SI20---4M27",91,,91,,21,,21,,61,952,"HK1003 -Blackpoint D2 - Rev.0E DD30092021;Modules_from_ZIN107;Modules_from_ZIN107"
1.1.1-103,SI20---3M81,"(RFS) READY FOR SHIPMENT FOR SHIPMENT LOT 2",5121,"HK1003-Rev.0E-3",TT_FinMile,"57050",-,-,-,0,TK_NotStart,31/03/2022,,31/03/2022,,"SI20---3M85 FS,SI20---4M11 FS","SI20---3M85,SI20---4M11","SI20---4M26 FS","SI20---4M26",86,,86,,20,,20,,54,208,"HK1003 -Blackpoint D2 - Rev.0E DD30092021;Modules_from_ZIN107;Modules_from_ZIN107"
1.1.1-104,SI20---3M80,"(RFS) READY FOR SHIPMENT FOR SHIPMENT LOT 1",5121,"HK1003-Rev.0E-3",TT_FinMile,"57050",-,-,-,0,TK_NotStart,02/03/2022,,02/03/2022,,"SI20---3M84 FF,SI20---4M10 FS,SI20---3M84 FS,SI-----2E91 FS","SI20---3M84,SI20---4M10,SI20---3M84,SI-----2E91","SI20---4M25 FS","SI20---4M25",82,,82,,19,,19,,51,240,"HK1003 -Blackpoint D2 - Rev.0E DD30092021;Modules_from_ZIN107;Modules_from_ZIN107"
1.1.1-105,SI--ZTB3B80,"(RFS) READY FOR SHIPMENT - PIPING / VALVES FOR STEAM BLOWING SYSTEM ZTB",5121,"HK1003-Rev.0E-3",TT_FinMile,"57050",-,-,-,0,TK_NotStart,06/01/2023,,06/01/2023,,"SI--ZTB4B10 FS","SI--ZTB4B10","SI--ZTB4A25 FS","SI--ZTB4A25",126,,126,,29,,29,,88,0,"HK1003 -Blackpoint D2 - Rev.0E DD30092021;Modules_from_ZIN107;Modules_from_ZIN107"
1.1.1-106,SI--ZTA3B80,"(RFS) READY FOR SHIPMENT - TEMP. PIPING / VALVES FOR CHEMICAL CLEANING SYSTEM ZTA",5121,"HK1003-Rev.0E-3",TT_FinMile,"57050",-,-,-,0,TK_NotStart,09/01/2023,,09/01/2023,,"SI--ZTA4B10 FS","SI--ZTA4B10","SI--ZTA4A25 FS","SI--ZTA4A25",127,,127,,29,,29,,88,88,"HK1003 -Blackpoint D2 - Rev.0E DD30092021;Modules_from_ZIN107;Modules_from_ZIN107"
1.1.1-107,SI20PDB7B16,"E- AND I&C-ERECTION CONDENSATE POLISHING PUMP",5121,"HK1003-Rev.0E-3",TT_Task,"57050",-,-,-,0,TK_NotStart,16/10/2022,,22/10/2022,,"SI20LDK6M15 FS,SI20BZK7E25 SS","SI20LDK6M15,SI20BZK7E25","SI20LD8B110 FS,SI20PCB7M15 FS,SI20BZK7D10# FF,SI20BZK7D10# SS,SI20BZK7D11# FF,SI20BZK7D11# SS","SI20LD8B110,SI20PCB7M15,SI20BZK7D10#,SI20BZK7D10#,SI20BZK7D11#,SI20BZK7D11#",115,,116,,26,,27,,83,1224,"HK1003 -Blackpoint D2 - Rev.0E DD30092021;Modules_from_ZIN107;Modules_from_ZIN107"
1.1.1-108,SI----P3I21,"PROCUREMENT VALVES",5121,"HK1003-Rev.0E-3",TT_Task,"57050",-,-,-,71,TK_Active,01/05/2021,01/05/2021,01/12/2021,,"SI-----2E85 SS,SI-----2E94 FS","SI-----2E85,SI-----2E94","SI20---3B05 FF,SI20---3B07 FF,SI20---3B11 FF,SI20---3B09 FS,SI20---3B06 FS,SI20---3B04 FS,SI----P3I30 SS,SI----P3I29 SS","SI20---3B05,SI20---3B07,SI20---3B11,SI20---3B09,SI20---3B06,SI20---3B04,SI----P3I30,SI----P3I29",39,39,69,,9,9,16,,10,392,"HK1003 -Blackpoint D2 - Rev.0E DD30092021;Modules_from_ZIN107;Modules_from_ZIN107"
1.1.1-109,SI20---4M27,"TRANSPORT FOR SHIPMENT LOT 3",5121,"HK1003-Rev.0E-3",TT_Task,"57050",-,-,-,0,TK_NotStart,03/05/2022,,06/06/2022,,"SI20---3M82 FS","SI20---3M82","SI20UPY4M40 FS,SI20UEY4-130 FS","SI20UPY4M40,SI20UEY4-130",91,,96,,21,,22,,61,952,"HK1003 -Blackpoint D2 - Rev.0E DD30092021;Modules_from_ZIN107;Modules_from_ZIN107"
1.1.1-110,SI20---3M14,"1st SHOP DRAWINGS FOR MODULES LOT 3",5121,"HK1003-Rev.0E-3",TT_Task,"57050",-,-,-,0,TK_NotStart,06/10/2021,,09/11/2021,,"SI20---2M25 FS,SI--2M-33 FF","SI20---2M25,SI--2M-33","SI20UPY3M31# SS,SI20LAC3M55# SS,SI20---2M30 FS,SI20---3B51 FS,SI20---3M15 FS","SI20UPY3M31#,SI20LAC3M55#,SI20---2M30,SI20---3B51,SI20---3M15",61,,66,,14,,15,,31,952,"HK1003 -Blackpoint D2 - Rev.0E DD30092021;Modules_from_ZIN107;Modules_from_ZIN107"
1.1.1-111,SI20---2M25,"FABRICATION DRAWINGS BB STEELWORK FINISHED LOT 3 PART 1",5121,"HK1003-Rev.0E-3",TT_Mile,"57050",-,-,-,0,TK_NotStart,06/10/2021,,06/10/2021,,"SI20---3M27 FS,SI--2M-23 FS","SI20---3M27,SI--2M-23","SI20---3M14 FS,SI20---3B51 FS","SI20---3M14,SI20---3B51",61,,61,,14,,14,,31,952,"HK1003 -Blackpoint D2 - Rev.0E DD30092021;Modules_from_ZIN107;Modules_from_ZIN107"
1.1.1-112,SI20---3M15,"REMAINING SHOP DRAWINGS FOR MODULES LOT 3",5121,"HK1003-Rev.0E-3",TT_Task,"57050",-,-,-,0,TK_NotStart,10/11/2021,,07/12/2021,,"SI20---2M30 FS,SI20---3M14 FS","SI20---2M30,SI20---3M14","SI20---3B51 FF,SI20---2M26 FS","SI20---3B51,SI20---2M26",66,,70,,15,,16,,37,1184,"HK1003 -Blackpoint D2 - Rev.0E DD30092021;Modules_from_ZIN107;Modules_from_ZIN107"
1.1.1-113,SI20---3M27,"FABRICATION DESIGN BB STEELWORK LOT 3",5121,"HK1003-Rev.0E-3",TT_Task,"57050",-,-,-,90,TK_Active,05/08/2021,05/08/2021,05/10/2021,,"SI20---2B50 FS","SI20---2B50","SI20---2M25 FS","SI20---2M25",52,52,61,,12,12,14,,24,952,"HK1003 -Blackpoint D2 - Rev.0E DD30092021;Modules_from_ZIN107;Modules_from_ZIN107"
1.1.1-114,SI20---4M26,"TRANSPORT FOR SHIPMENT LOT 2",5121,"HK1003-Rev.0E-3",TT_Task,"57050",-,-,-,0,TK_NotStart,02/04/2022,,06/05/2022,,"SI20---3M81 FS","SI20---3M81","SI20UMC4M41 FS,SI20LAC4M40 FS,SI20LCA4M41 FS,SI20UMC4M40 FS,SI20PGB4M40 FS,SI20PGB4M41 FS,SI20PCB4-40 FS","SI20UMC4M41,SI20LAC4M40,SI20LCA4M41,SI20UMC4M40,SI20PGB4M40,SI20PGB4M41,SI20PCB4-40",87,,91,,20,,21,,55,200,"HK1003 -Blackpoint D2 - Rev.0E DD30092021;Modules_from_ZIN107;Modules_from_ZIN107"
1.1.1-115,SI20---3M10,"1st SHOP DRAWINGS FOR MODULES LOT 2",5121,"HK1003-Rev.0E-3",TT_Task,"57050",-,-,-,77,TK_Active,03/09/2021,03/09/2021,07/10/2021,,"SI20---2M23 FS,SI--2M-32 FF","SI20---2M23,SI--2M-32","SI20UMC3M37# SS,SI20---2M29 FS,SI20---3B44 FS,SI20---3M11 FS,SI20LCA3M38# SS,SI20PGB3M31# SS,SI20PGB3M40# SS,SI20PCB3M55# SS","SI20UMC3M37#,SI20---2M29,SI20---3B44,SI20---3M11,SI20LCA3M38#,SI20PGB3M31#,SI20PGB3M40#,SI20PCB3M55#",56,56,61,,13,13,14,,28,208,"HK1003 -Blackpoint D2 - Rev.0E DD30092021;Modules_from_ZIN107;Modules_from_ZIN107"
1.1.1-116,SI20---2M23,"FABRICATION DRAWINGS BB STEELWORK FINISHED LOT 2",5121,"HK1003-Rev.0E-3",TT_Mile,"57050",-,-,-,100,TK_Complete,03/09/2021,03/09/2021,03/09/2021,03/09/2021,"SI---1P2H530 FS,SI20---3M26 FS,SI--2M-22 FS","SI---1P2H530,SI20---3M26,SI--2M-22","SI20---3B44 FS,SI20---3M10 FS","SI20---3B44,SI20---3M10",56,56,56,56,13,13,13,13,28,,"HK1003 -Blackpoint D2 - Rev.0E DD30092021;Modules_from_ZIN107;Modules_from_ZIN107"
1.1.1-117,SI20---3M11,"REMAINING SHOP DRAWINGS FOR MODULES LOT 2",5121,"HK1003-Rev.0E-3",TT_Task,"57050",-,-,-,0,TK_NotStart,08/10/2021,,04/11/2021,,"SI---1P2H528 FS,SI---1P2H530 FS,SI20---2M29 SS,SI20---3M10 FS","SI---1P2H528,SI---1P2H530,SI20---2M29,SI20---3M10","SI20---3B44 FF,SI20---2M24 FS","SI20---3B44,SI20---2M24",61,,65,,14,,15,,32,480,"HK1003 -Blackpoint D2 - Rev.0E DD30092021;Modules_from_ZIN107;Modules_from_ZIN107"
1.1.1-118,SI20---3M26,"FABRICATION DESIGN BB STEELWORK LOT 2",5121,"HK1003-Rev.0E-3",TT_Task,"57050",-,-,-,100,TK_Complete,17/06/2021,17/06/2021,01/09/2021,01/09/2021,"SI20---2B43 SS","SI20---2B43","SI20---2M23 FS","SI20---2M23",45,45,56,56,10,10,13,13,17,,"HK1003 -Blackpoint D2 - Rev.0E DD30092021;Modules_from_ZIN107;Modules_from_ZIN107"
1.1.1-119,SI20---4M25,"TRANSPORT FOR SHIPMENT LOT 1",5121,"HK1003-Rev.0E-3",TT_Task,"57050",-,-,-,0,TK_NotStart,03/03/2022,,06/04/2022,,"SI20---3M80 FS","SI20---3M80","SI20UMY4M40 FS,SI20MAW4M40 FS,SI20MAL4M40 FS,SI20MAW4M41 FS,SI20MAG4M40 FS,SI20ULY4M40 FS,SI20LDK4M40 FS","SI20UMY4M40,SI20MAW4M40,SI20MAL4M40,SI20MAW4M41,SI20MAG4M40,SI20ULY4M40,SI20LDK4M40",82,,87,,19,,20,,51,240,"HK1003 -Blackpoint D2 - Rev.0E DD30092021;Modules_from_ZIN107;Modules_from_ZIN107"
1.1.1-120,SI20---3M06,"1st SHOP DRAWINGS FOR MODULES LOT 1",5121,"HK1003-Rev.0E-3",TT_Task,"57050",-,-,-,100,TK_Complete,16/08/2021,16/08/2021,07/09/2021,07/09/2021,"SI20---2M21 FS,SI--2M-11 FF","SI20---2M21,SI--2M-11","SI20UMC3M31# SS,SI20UMY3M31# SS,SI20MAW3M38# SS,SI20MAW3M31# SS,SI20MAL3M31# SS,SI20MAG3M31# SS,SI20---2M28 FS,SI20---2M27 FS,SI20-1P340 FS,SI20---3M07 FS,SI20UEY3-20# SS,SI20ULY3M55# SS,SI20LDK3M55# SS","SI20UMC3M31#,SI20UMY3M31#,SI20MAW3M38#,SI20MAW3M31#,SI20MAL3M31#,SI20MAG3M31#,SI20---2M28,SI20---2M27,SI20-1P340,SI20---3M07,SI20UEY3-20#,SI20ULY3M55#,SI20LDK3M55#",54,54,57,57,12,12,13,13,26,,"HK1003 -Blackpoint D2 - Rev.0E DD30092021;Modules_from_ZIN107;Modules_from_ZIN107"
1.1.1-121,SI20---2M21,"FABRICATION DRAWINGS BB STEELWORK FINISHED LOT 1",5121,"HK1003-Rev.0E-3",TT_Mile,"57050",-,-,-,100,TK_Complete,01/08/2021,01/08/2021,01/08/2021,01/08/2021,"SI20---3M25 FS","SI20---3M25","SI20---3M06 FS","SI20---3M06",52,52,52,52,12,12,12,12,24,,"HK1003 -Blackpoint D2 - Rev.0E DD30092021;Modules_from_ZIN107;Modules_from_ZIN107"
1.1.1-122,SI20---3M07,"REMAINING SHOP DRAWINGS FOR MODULES LOT 1",5121,"HK1003-Rev.0E-3",TT_Task,"57050",-,-,-,79,TK_Active,08/09/2021,08/09/2021,05/10/2021,,"SI---1P2H528 FS,SI---1P2H530 FS,SI20---3M06 FS,SI--2M-31 FF","SI---1P2H528,SI---1P2H530,SI20---3M06,SI--2M-31","SI20---2M22 FS,SI20-1P340 FF","SI20---2M22,SI20-1P340",57,57,61,,13,13,14,,29,488,"HK1003 -Blackpoint D2 - Rev.0E DD30092021;Modules_from_ZIN107;Modules_from_ZIN107"
1.1.1-123,SI20---3M25,"FABRICATION DESIGN BB STEELWORK LOT 1",5121,"HK1003-Rev.0E-3",TT_Task,"57050",-,-,-,100,TK_Complete,30/05/2021,30/05/2021,31/07/2021,31/07/2021,"SI-----3M64 SS,SI----P3I32 FS","SI-----3M64,SI----P3I32","SI20---2M21 FS","SI20---2M21",43,43,52,52,10,10,12,12,15,,"HK1003 -Blackpoint D2 - Rev.0E DD30092021;Modules_from_ZIN107;Modules_from_ZIN107"
1.1.1-124,SI-----3M61,"BASIC DESIGN BB STEELWORK LOT 1",5121,"HK1003-Rev.0E-3",TT_Task,"57050",-,-,-,100,TK_Complete,27/01/2021,27/01/2021,10/05/2021,10/05/2021,"SI-----2M36 FS,SI-----1-05 FS","SI-----2M36,SI-----1-05","SI-----2M40 SS,SI-----2F60 FS,SI-----3M64 FS","SI-----2M40,SI-----2F60,SI-----3M64",25,25,40,40,5,5,9,9,3,,"HK1003 -Blackpoint D2 - Rev.0E DD30092021;Modules_from_ZIN107;Modules_from_ZIN107"
1.1.1-125,SI-----2M36,"INPUTS FOR DETAIL DESIGN REQUIRED LOT1",5121,"HK1003-Rev.0E-3",TT_Mile,"57050",-,-,-,100,TK_Complete,27/01/2021,27/01/2021,27/01/2021,27/01/2021,"SI-----2M96 FS,SI-----2M95 FS","SI-----2M96,SI-----2M95","SI-----3M61 FS","SI-----3M61",25,25,25,25,5,5,5,5,3,,"HK1003 -Blackpoint D2 - Rev.0E DD30092021;Modules_from_ZIN107;Modules_from_ZIN107"
1.1.1-126,SI20UMY4M40,"(OTD-OS) ON SITE MODULE 20UMY00Y",5121,"HK1003-Rev.0E-3",TT_FinMile,"57050",-,-,-,0,TK_NotStart,10/04/2022,,10/04/2022,,"SI20---4M25 FS,SI20UMY4M25 FS","SI20---4M25,SI20UMY4M25","SI20UMY6M06 FS,SI20UMY6M11 FS,SI20BZP7-20 FS,SI20UMY6M05 FF,SI20UMY6M12 FS,SI20UMY6M07 FS,SI20UMY6M10 FS,SI20UMY6M73 FS,SI20UMY6M74 FS,SI20UMY6M75 FS,SI20UMY6M18 FS","SI20UMY6M06,SI20UMY6M11,SI20BZP7-20,SI20UMY6M05,SI20UMY6M12,SI20UMY6M07,SI20UMY6M10,SI20UMY6M73,SI20UMY6M74,SI20UMY6M75,SI20UMY6M18",88,,88,,20,,20,,57,216,"HK1003 -Blackpoint D2 - Rev.0E DD30092021;Modules_from_ZIN107;Modules_from_ZIN107"
1.1.1-127,SI--LDK2B75,"TECHNICAL CLARFICIATION / PREP. RFQ CONDENSATE POLISHING PUMP 20LDK",5121,"HK1003-Rev.0E-3",TT_Task,"57050",-,-,-,100,TK_Complete,22/01/2021,22/01/2021,04/03/2021,04/03/2021,"SI--3331-32 FS,SI--L--2-05 SS,SI20LDK2B86 FF,SI-----1-01 FS,SI-----1-05 FS","SI--3331-32,SI--L--2-05,SI20LDK2B86,SI-----1-01,SI-----1-05","SI20LDK2B90 FS,SI--LDK2B81 FS","SI20LDK2B90,SI--LDK2B81",24,24,30,30,5,5,7,7,2,,"HK1003 -Blackpoint D2 - Rev.0E DD30092021;Modules_from_ZIN107;Modules_from_ZIN107"
1.1.1-128,SI20LDK3B81,"(RFS) READY FOR SHIPMENT CONDENSATE POLISHING PUMP 20LDK",5121,"HK1003-Rev.0E-3",TT_FinMile,"57050",-,-,-,0,TK_NotStart,10/10/2021,,10/10/2021,,"SI20LDK3B31 FS,SI20LDK4B11 FS","SI20LDK3B31,SI20LDK4B11","SI20LDK2B05 FS,SI20LDK4B26 FS","SI20LDK2B05,SI20LDK4B26",62,,62,,14,,14,,32,240,"HK1003 -Blackpoint D2 - Rev.0E DD30092021;Modules_from_ZIN107;Modules_from_ZIN107"
1.1.1-129,SI--PDB2B75,"PREPARATION RFQ DEBRIS FILTER 20PDB",5121,"HK1003-Rev.0E-3",TT_Task,"57050",-,-,-,100,TK_Complete,15/01/2021,15/01/2021,10/02/2021,10/02/2021,"SI--3331-32 FS,SI--P--2-05 SS,SI-----1-01 FS,SI-----1-05 FS","SI--3331-32,SI--P--2-05,SI-----1-01,SI-----1-05","SI20PAH2-75 SS,SI--PDB2B80 FS,SI20PAA2-5 SS","SI20PAH2-75,SI--PDB2B80,SI20PAA2-5",23,23,27,27,5,5,6,6,2,,"HK1003 -Blackpoint D2 - Rev.0E DD30092021;Modules_from_ZIN107;Modules_from_ZIN107"
1.1.1-130,SI20PDB3B80,"(RFS) READY FOR SHIPMENT DEBRIS FILTER 20PDB",5121,"HK1003-Rev.0E-3",TT_FinMile,"57050",-,-,-,0,TK_NotStart,19/11/2021,,19/11/2021,,"SI20PDB4B10 FS,SI20PDB3B25 FS","SI20PDB4B10,SI20PDB3B25","SI20PDB2-05 FS,SI20PDB4B25 FS","SI20PDB2-05,SI20PDB4B25",67,,67,,15,,15,,39,208,"HK1003 -Blackpoint D2 - Rev.0E DD30092021;Modules_from_ZIN107;Modules_from_ZIN107"
1.1.1-131,SI--PDB2B60,"(DF) INPUT FOR MS3 DEBRIS FILTER 20PDB",5121,"HK1003-Rev.0E-3",TT_FinMile,"57050",-,-,-,100,TK_Complete,11/06/2021,11/06/2021,11/06/2021,11/06/2021,"SI20PDB3-25 SF","SI20PDB3-25","SI20UQX2-5 FS","SI20UQX2-5",44,44,44,44,10,10,10,10,16,,"HK1003 -Blackpoint D2 - Rev.0E DD30092021;Modules_from_ZIN107;Modules_from_ZIN107"
1.1.1-132,SI--PDB2B65,"(DF) INPUT FOR M2 DEBRIS FILTER 20PDB",5121,"HK1003-Rev.0E-3",TT_FinMile,"57050",-,-,-,100,TK_Complete,07/06/2021,07/06/2021,07/06/2021,07/06/2021,"SI20PDB3-25 SF","SI20PDB3-25","SI---5P2A10 FS,SI---3P2A10 FS","SI---5P2A10,SI---3P2A10",44,44,44,44,10,10,10,10,16,,"HK1003 -Blackpoint D2 - Rev.0E DD30092021;Modules_from_ZIN107;Modules_from_ZIN107"
1.1.1-133,SI--LDK2B61,"(DF) INPUT FOR MS3 CONDENSATE POLISHING PUMP LDK",5121,"HK1003-Rev.0E-3",TT_FinMile,"57050",-,-,-,100,TK_Complete,10/05/2021,10/05/2021,10/05/2021,10/05/2021,"SI20LDK2B86 FS,SI--LDK2B86 FS","SI20LDK2B86,SI--LDK2B86","SI-----2G60 FS","SI-----2G60",40,40,40,40,9,9,9,9,12,,"HK1003 -Blackpoint D2 - Rev.0E DD30092021;Modules_from_ZIN107;Modules_from_ZIN107"
1.1.1-134,SI--LDK2B86,"CONTRACT INTO FORCE CONDENSATE POLISHING PUMP 20LDK",5121,"HK1003-Rev.0E-3",TT_Mile,"57050",-,-,-,100,TK_Complete,09/04/2021,09/04/2021,09/04/2021,09/04/2021,"SI--LDK2B81 FS,SI--LCA2B85 FS","SI--LDK2B81,SI--LCA2B85","SI20LDK3B31 FS,SI--LDK2B61 FS,SI--LDK2B87 FS,SI--LDK2B66 FS,SI--LDK2B89 FS","SI20LDK3B31,SI--LDK2B61,SI--LDK2B87,SI--LDK2B66,SI--LDK2B89",35,35,35,35,8,8,8,8,7,,"HK1003 -Blackpoint D2 - Rev.0E DD30092021;Modules_from_ZIN107;Modules_from_ZIN107"
1.1.1-135,SI--LDK2B81,"QUOTATION STAGE CONDENSATE POLISHING PUMP 20LDK",5121,"HK1003-Rev.0E-3",TT_Task,"57050",-,-,-,100,TK_Complete,05/03/2021,05/03/2021,08/04/2021,08/04/2021,"SI--LDK2B75 FS","SI--LDK2B75","SI--LDK2B66 FS,SI--LDK2B86 FS","SI--LDK2B66,SI--LDK2B86",30,30,35,35,7,7,8,8,5,,"HK1003 -Blackpoint D2 - Rev.0E DD30092021;Modules_from_ZIN107;Modules_from_ZIN107"
1.1.1-136,SI20PDB4B14,"(OTD-OS) ARRIVAL AT SKIDDER DEBRIS FILTER 20PDB",5121,"HK1003-Rev.0E-3",TT_FinMile,"57050",-,-,-,0,TK_NotStart,10/01/2022,,10/01/2022,,"SI20PDB4B25 FS,SI20PDB2-05 FS","SI20PDB4B25,SI20PDB2-05","SI20---3B13 FS,SI20PCB4M24 FS,SI20---3B10 FS","SI20---3B13,SI20PCB4M24,SI20---3B10",75,,75,,17,,17,,44,208,"HK1003 -Blackpoint D2 - Rev.0E DD30092021;Modules_from_ZIN107;Modules_from_ZIN107"
1.1.1-137,SI20PDB4B25,"TRANSPORT TO SKIDDER DEBRIS FILTER 20PDB",5121,"HK1003-Rev.0E-3",TT_Task,"57050",-,-,-,0,TK_NotStart,20/11/2021,,10/01/2022,,"SI20PDB3B80 FS","SI20PDB3B80","SI20PDB4B14 FS","SI20PDB4B14",68,,75,,15,,17,,39,208,"HK1003 -Blackpoint D2 - Rev.0E DD30092021;Modules_from_ZIN107;Modules_from_ZIN107"
1.1.1-138,SI20PDB3B25,"MANUFACTURING / SHOP TEST DEBRIS FILTER 20PDB",5121,"HK1003-Rev.0E-3",TT_Task,"57050",-,-,-,82,TK_Active,16/06/2021,16/06/2021,22/10/2021,,"SI20PDB3-25 FS,SI--PDB2B85 FS","SI20PDB3-25,SI--PDB2B85","SI20PDB3B70 FS,SI20PDB3B80 FS","SI20PDB3B70,SI20PDB3B80",45,45,63,,10,10,14,,17,208,"HK1003 -Blackpoint D2 - Rev.0E DD30092021;Modules_from_ZIN107;Modules_from_ZIN107"
1.1.1-139,SI--PDB2B85,"CONTRACT INTO FORCE DEBRIS FILTER 20PDB",5121,"HK1003-Rev.0E-3",TT_Mile,"57050",-,-,-,100,TK_Complete,04/05/2021,04/05/2021,04/05/2021,04/05/2021,"SI--PDB2B80 FS","SI--PDB2B80","SI20PAH2-85 SS,SI20PDB3-25 FS,SI20PDB3B25 FS,SI--PDB2B86 FS,SI20PAA2-85 FS","SI20PAH2-85,SI20PDB3-25,SI20PDB3B25,SI--PDB2B86,SI20PAA2-85",39,39,39,39,9,9,9,9,11,,"HK1003 -Blackpoint D2 - Rev.0E DD30092021;Modules_from_ZIN107;Modules_from_ZIN107"
1.1.1-140,SI20UMC5B48,"ERECTION CRANE WALKWAY 20SMM01/02 20UMC",5121,"HK1003-Rev.0E-3",TT_Task,"57050",-,-,-,0,TK_NotStart,14/03/2022,,10/04/2022,,"SI20UMC5B15 FF,SI20SMM4-40 FS","SI20UMC5B15,SI20SMM4-40","SI20UMC5B49 FS","SI20UMC5B49",84,,88,,19,,20,,52,96,"HK1003 -Blackpoint D2 - Rev.0E DD30092021;Modules_from_ZIN107;Modules_from_ZIN107"
1.1.1-141,SI20LDK3B31,"MANUFACTURING / SHOP TEST CONDENSATE POLISHING PUMP 20LDK",5121,"HK1003-Rev.0E-3",TT_Task,"57050",-,-,-,100,TK_Complete,09/04/2021,09/04/2021,12/09/2021,12/09/2021,"SI--LDK2B86 FS","SI--LDK2B86","SI20LDK3B81 FS,SI20LDK3B71 FS","SI20LDK3B81,SI20LDK3B71",35,35,58,58,8,8,13,13,7,,"HK1003 -Blackpoint D2 - Rev.0E DD30092021;Modules_from_ZIN107;Modules_from_ZIN107"
1.1.1-142,SI--LDK2B66,"(DF) INPUT FOR M2 CONDENSATE POLISHING PUMP LDK",5121,"HK1003-Rev.0E-3",TT_FinMile,"57050",-,-,-,100,TK_Complete,01/06/2021,01/06/2021,01/06/2021,01/06/2021,"SI--LDK2B81 FS,SI--LDK2B86 FS","SI--LDK2B81,SI--LDK2B86","SI---2P2A10 FS","SI---2P2A10",43,43,43,43,10,10,10,10,15,,"HK1003 -Blackpoint D2 - Rev.0E DD30092021;Modules_from_ZIN107;Modules_from_ZIN107"
1.1.1-143,SI20LDK4B41,"(OTD) CONDENSATE POLISHING PUMP AT SKIDDER  20LDK",5121,"HK1003-Rev.0E-3",TT_FinMile,"57050",-,-,-,0,TK_NotStart,10/12/2021,,10/12/2021,,"SI20LDK4B26 FS","SI20LDK4B26","SI20---3B26 FS","SI20---3B26",70,,70,,16,,16,,42,240,"HK1003 -Blackpoint D2 - Rev.0E DD30092021;Modules_from_ZIN107;Modules_from_ZIN107"
1.1.1-144,SI20LDK4B26,"TRANSPORT TO SKIDDER CONDENSATE POLISHING PUMP 20LDK",5121,"HK1003-Rev.0E-3",TT_Task,"57050",-,-,-,0,TK_NotStart,16/10/2021,,10/12/2021,,"SI20LDK3B81 FS","SI20LDK3B81","SI20LDK4B41 FS","SI20LDK4B41",63,,70,,14,,16,,34,240,"HK1003 -Blackpoint D2 - Rev.0E DD30092021;Modules_from_ZIN107;Modules_from_ZIN107"
1.1.1-145,SI--LCA2B60,"(DF) INPUT FOR MS3 CONDENSATE RECIRC.PUMP LCA51",5121,"HK1003-Rev.0E-3",TT_FinMile,"57050",-,-,-,100,TK_Complete,06/05/2021,06/05/2021,06/05/2021,06/05/2021,"SI--LCA2B85 SS","SI--LCA2B85","SI-----2G60 FS","SI-----2G60",39,39,39,39,9,9,9,9,11,,"HK1003 -Blackpoint D2 - Rev.0E DD30092021;Modules_from_ZIN107;Modules_from_ZIN107"
1.1.1-146,SI20LCA3B39,"MANUFACTURING / SHOP TEST CONDENSATE RECIRC.PUMP 20LCA51",5121,"HK1003-Rev.0E-3",TT_Task,"57050",-,-,-,90,TK_Active,09/04/2021,09/04/2021,19/10/2021,,"SI--LCA2B85 FS,SI--HA-2-85 FS","SI--LCA2B85,SI--HA-2-85","SI20LCA3B80 FS,SI20LCA3B70 FS,SI20LCA2B05 SS","SI20LCA3B80,SI20LCA3B70,SI20LCA2B05",35,35,63,,8,8,14,,7,208,"HK1003 -Blackpoint D2 - Rev.0E DD30092021;Modules_from_ZIN107;Modules_from_ZIN107"
1.1.1-147,SI--PDB2B80,"QUOTATION STAGE DEBRIS FILTER 20PDB",5121,"HK1003-Rev.0E-3",TT_Task,"57050",-,-,-,100,TK_Complete,11/02/2021,11/02/2021,03/05/2021,03/05/2021,"SI--PDB2B75 FS","SI--PDB2B75","SI--PDB2B85 FS","SI--PDB2B85",27,27,39,39,6,6,9,9,4,,"HK1003 -Blackpoint D2 - Rev.0E DD30092021;Modules_from_ZIN107;Modules_from_ZIN107"
1.1.1-148,SI20UPY4M40,"(OTD-OS) ON SITE MODULE 20UPY00Y",5121,"HK1003-Rev.0E-3",TT_FinMile,"57050",-,-,-,0,TK_NotStart,06/06/2022,,06/06/2022,,"SI20---4M27 FS,SI20UPY4M25 FS","SI20---4M27,SI20UPY4M25","SI20UPY6M10 FS,SI20PAH6-15 FS,SI20PAH6-40 SS","SI20UPY6M10,SI20PAH6-15,SI20PAH6-40",96,,96,,22,,22,,68,952,"HK1003 -Blackpoint D2 - Rev.0E DD30092021;Modules_from_ZIN107;Modules_from_ZIN107"
1.1.1-149,SI20UPY4M25,"TRANSPORT MODULE 20UPY00Y",5121,"HK1003-Rev.0E-3",TT_Task,"57050",-,-,-,0,TK_NotStart,03/05/2022,,06/06/2022,,"SI20UPY3M80 FS","SI20UPY3M80","SI20UPY4M40 FS","SI20UPY4M40",91,,96,,21,,22,,61,952,"HK1003 -Blackpoint D2 - Rev.0E DD30092021;Modules_from_ZIN107;Modules_from_ZIN107"
1.1.1-150,SI20UMC6M41,"(RFP) READY FOR PIPE CONNECTION PXB PIPERACK 20UMCL1Y",5121,"HK1003-Rev.0E-3",TT_FinMile,"57050",-,-,-,0,TK_NotStart,20/05/2022,,20/05/2022,,"SI20UMC6M16 FS","SI20UMC6M16","SI20UMC6B-15 FF","SI20UMC6B-15",93,,93,,21,,21,,65,1064,"HK1003 -Blackpoint D2 - Rev.0E DD30092021;Modules_from_ZIN107;Modules_from_ZIN107"
1.1.1-151,SI--LCA2B65,"(DF) INPUT FOR M2 CONDENSATE RECIRC.PUMP LCA51",5121,"HK1003-Rev.0E-3",TT_FinMile,"57050",-,-,-,100,TK_Complete,22/05/2021,22/05/2021,22/05/2021,22/05/2021,"SI--LCA2B85 FS","SI--LCA2B85","SI---2P2A10 FS","SI---2P2A10",42,42,42,42,9,9,9,9,13,,"HK1003 -Blackpoint D2 - Rev.0E DD30092021;Modules_from_ZIN107;Modules_from_ZIN107"
1.1.1-152,SI20LCA3B80,"(RFS) READY FOR SHIPMENT CONDENSATE RECIRC.PUMP 20LCA51",5121,"HK1003-Rev.0E-3",TT_FinMile,"57050",-,-,-,0,TK_NotStart,16/11/2021,,16/11/2021,,"SI20LCA3B39 FS,SI20LCA4B10 FS,SI20LCA2B05 FS","SI20LCA3B39,SI20LCA4B10,SI20LCA2B05","SI20LCA4B25 SS","SI20LCA4B25",67,,67,,15,,15,,38,208,"HK1003 -Blackpoint D2 - Rev.0E DD30092021;Modules_from_ZIN107;Modules_from_ZIN107"
1.1.1-153,SI20UMC4M41,"(OTD-OS) ON SITE MODULE PxB 20UMCL1Y",5121,"HK1003-Rev.0E-3",TT_FinMile,"57050",-,-,-,0,TK_NotStart,06/05/2022,,06/05/2022,,"SI20---4M26 FS,SI20UMC4M26 FS,SI20---3M112 FS","SI20---4M26,SI20UMC4M26,SI20---3M112","SI20UMC6M16 FS","SI20UMC6M16",91,,91,,21,,21,,63,1064,"HK1003 -Blackpoint D2 - Rev.0E DD30092021;Modules_from_ZIN107;Modules_from_ZIN107"
1.1.1-154,SI20UMC4M26,"TRANSPORT MODULE PxB 20UMCL1Y",5121,"HK1003-Rev.0E-3",TT_Task,"57050",-,-,-,0,TK_NotStart,02/04/2022,,06/05/2022,,"SI20UMC3M81 FS","SI20UMC3M81","SI20UMC4M41 FS","SI20UMC4M41",87,,91,,20,,21,,55,1064,"HK1003 -Blackpoint D2 - Rev.0E DD30092021;Modules_from_ZIN107;Modules_from_ZIN107"
1.1.1-155,SI20UMC6M16,"MECHANICAL ERECTION MODULE PxB 20UMCL1Y",5121,"HK1003-Rev.0E-3",TT_Task,"57050",-,-,-,0,TK_NotStart,07/05/2022,,20/05/2022,,"SI20UMY6M15 FS,SI20UMC5B49 FS,SI20UMC4M41 FS,SI20UMY6M17 FS,SI20---3M112 FS,SI20UMC6M43 FS","SI20UMY6M15,SI20UMC5B49,SI20UMC4M41,SI20UMY6M17,SI20---3M112,SI20UMC6M43","SI20PGB6M15 SS,SI20UMC6M41 FS,SI20BZP7-165 FS,SI20UMC6B-35 FS","SI20PGB6M15,SI20UMC6M41,SI20BZP7-165,SI20UMC6B-35",92,,93,,21,,21,,63,1064,"HK1003 -Blackpoint D2 - Rev.0E DD30092021;Modules_from_ZIN107;Modules_from_ZIN107"
1.1.1-156,SI20PGB6M16,"ERECTION MODULE 20PGB20Y",5121,"HK1003-Rev.0E-3",TT_Task,"57050",-,-,-,0,TK_NotStart,06/06/2022,,12/06/2022,,"SI20PGB2C05 FS,SI20PGB2D05 FS,SI20PGB2B05 FS,SI20PCB2B05 FS,SI20PGB4M41 FS,SI20PCB6M16 SS,SI20UMC5E48 FS","SI20PGB2C05,SI20PGB2D05,SI20PGB2B05,SI20PCB2B05,SI20PGB4M41,SI20PCB6M16,SI20UMC5E48","SI20PCB6M10 FS,SI20PGB6M40 FS,SI20UMC6B-35 FS","SI20PCB6M10,SI20PGB6M40,SI20UMC6B-35",96,,97,,22,,22,,68,1104,"HK1003 -Blackpoint D2 - Rev.0E DD30092021;Modules_from_ZIN107;Modules_from_ZIN107"
1.1.1-157,SI20LCA3M81,"(RFS) READY FOR SHIPMENT FOR MODULE 20LCA50Y",5121,"HK1003-Rev.0E-3",TT_FinMile,"57050",-,-,-,0,TK_NotStart,08/04/2022,,08/04/2022,,"SI20LCA4M11 FS","SI20LCA4M11","SI20LCA4M26 FS","SI20LCA4M26",87,,87,,20,,20,,56,144,"HK1003 -Blackpoint D2 - Rev.0E DD30092021;Modules_from_ZIN107;Modules_from_ZIN107"
1.1.1-158,SI--LCA2B20,"PROPOSAL PUMP CURVES FOR DESIGN C-V CONDENSATE RECIRC.PUMP LCA51",5121,"HK1003-Rev.0E-3",TT_Mile,"57050",-,-,-,100,TK_Complete,30/04/2021,30/04/2021,30/04/2021,30/04/2021,"SI-----2M30 FS,SI--LCA2B75 FS","SI-----2M30,SI--LCA2B75","SI--L--2I46 FS,SI--L--2I45 FS","SI--L--2I46,SI--L--2I45",38,38,38,38,9,9,9,9,10,,"HK1003 -Blackpoint D2 - Rev.0E DD30092021;Modules_from_ZIN107;Modules_from_ZIN107"
1.1.1-159,SI20LCA4B42,"(OTD) CONDENSATE RECIRC.PUMP AT SKIDDER 20LCA51",5121,"HK1003-Rev.0E-3",TT_FinMile,"57050",-,-,-,0,TK_NotStart,10/01/2022,,10/01/2022,,"SI20LCA4B25 FS","SI20LCA4B25","SI20LCA4M23 FF,SI20---3B10 FS","SI20LCA4M23,SI20---3B10",75,,75,,17,,17,,44,208,"HK1003 -Blackpoint D2 - Rev.0E DD30092021;Modules_from_ZIN107;Modules_from_ZIN107"
1.1.1-160,SI--LCA2B75,"CONTRACT REVIEW / PREP. RFQ CONDENSATE RECIRC.PUMP LCA51",5121,"HK1003-Rev.0E-3",TT_Task,"57050",-,-,-,100,TK_Complete,05/02/2021,05/02/2021,04/03/2021,04/03/2021,"SI--3331-32 FS,SI20LCA2B87 SS,SI--HA-2A86 FS,SI-----1-01 FS,SI--3332-76 FS,SI-----1-05 FS","SI--3331-32,SI20LCA2B87,SI--HA-2A86,SI-----1-01,SI--3332-76,SI-----1-05","SI--LCA2B20 FS,SI--LCA2B80 FS","SI--LCA2B20,SI--LCA2B80",26,26,30,30,6,6,7,7,4,,"HK1003 -Blackpoint D2 - Rev.0E DD30092021;Modules_from_ZIN107;Modules_from_ZIN107"
1.1.1-161,SI20LCA4B25,"TRANSPORT TO SKIDDER CONDENSATE RECIRC.PUMP  20LCA51",5121,"HK1003-Rev.0E-3",TT_Task,"57050",-,-,-,0,TK_NotStart,17/11/2021,,10/01/2022,,"SI20LCA3B80 SS","SI20LCA3B80","SI20LCA4B42 FS","SI20LCA4B42",67,,75,,15,,17,,38,208,"HK1003 -Blackpoint D2 - Rev.0E DD30092021;Modules_from_ZIN107;Modules_from_ZIN107"
1.1.1-162,SI--LCA2B85,"CONTRACT INTO FORCE CONDENSATE RECIRC.PUMP LCA51",5121,"HK1003-Rev.0E-3",TT_Mile,"57050",-,-,-,100,TK_Complete,09/04/2021,09/04/2021,09/04/2021,09/04/2021,"SI--LCA2B80 FS","SI--LCA2B80","SI--LCA2B65 FS,SI--LCA2B60 SS,SI20LCA3B39 FS,SI--LCA2B86 FS,SI--LCA2B87 FS,SI--LDK2B86 FS","SI--LCA2B65,SI--LCA2B60,SI20LCA3B39,SI--LCA2B86,SI--LCA2B87,SI--LDK2B86",35,35,35,35,8,8,8,8,7,,"HK1003 -Blackpoint D2 - Rev.0E DD30092021;Modules_from_ZIN107;Modules_from_ZIN107"
1.1.1-163,SI--LCA2B80,"QUOTATION STAGE CONDENSATE RECIRC.PUMP LCA51",5121,"HK1003-Rev.0E-3",TT_Task,"57050",-,-,-,100,TK_Complete,05/03/2021,05/03/2021,08/04/2021,08/04/2021,"SI--LCA2B75 FS","SI--LCA2B75","SI--LCA2B85 FS","SI--LCA2B85",30,30,35,35,7,7,8,8,5,,"HK1003 -Blackpoint D2 - Rev.0E DD30092021;Modules_from_ZIN107;Modules_from_ZIN107"
1.1.1-164,SI20PGB4M41,"(OTD-OS) ON SITE MODULE 20PGB20Y",5121,"HK1003-Rev.0E-3",TT_FinMile,"57050",-,-,-,0,TK_NotStart,05/06/2022,,05/06/2022,,"SI20PGB4M26 FS,SI20---4M26 FS,SI20---3M113 FS","SI20PGB4M26,SI20---4M26,SI20---3M113","SI20PGB6M16 FS","SI20PGB6M16",96,,96,,22,,22,,68,1104,"HK1003 -Blackpoint D2 - Rev.0E DD30092021;Modules_from_ZIN107;Modules_from_ZIN107"
1.1.1-165,SI20PGB4M24,"DELIVERY OF COMPONENTS MODULE_PGB HEAT EXCHANGER",5121,"HK1003-Rev.0E-3",TT_FinMile,"57050",-,-,-,0,TK_NotStart,07/11/2021,,07/11/2021,,"SI20PGB4C44 FS","SI20PGB4C44","SI20---3B13 FS","SI20---3B13",66,,66,,15,,15,,37,1752,"HK1003 -Blackpoint D2 - Rev.0E DD30092021;Modules_from_ZIN107;Modules_from_ZIN107"
1.1.1-166,SI20PGB4M26,"TRANSPORT MODULE 20PGB20Y",5121,"HK1003-Rev.0E-3",TT_Task,"57050",-,-,-,0,TK_NotStart,02/05/2022,,05/06/2022,,"SI20PGB3M81 FS","SI20PGB3M81","SI20PGB4M41 FS","SI20PGB4M41",91,,96,,21,,22,,61,1104,"HK1003 -Blackpoint D2 - Rev.0E DD30092021;Modules_from_ZIN107;Modules_from_ZIN107"
1.1.1-167,SI20UMC6M15,"MECHANICAL ERECTION MODULE 20UMCM1Y",5121,"HK1003-Rev.0E-3",TT_Task,"57050",-,-,-,0,TK_NotStart,14/05/2022,,27/05/2022,,"SI20UMC4M40 FS,SI20SMM6-70 FS,SI20---3M111 FS,SI20UMC5E58 FS,SI20UMC6M42 FS","SI20UMC4M40,SI20SMM6-70,SI20---3M111,SI20UMC5E58,SI20UMC6M42","SI20MA-6-03 FS,SI20MA-6-07 FS,SI20MA-6A10 FS,SI20MKA6-12 FS,SI20UMC6M40 FS,SI20UMC6B-75 FS","SI20MA-6-03,SI20MA-6-07,SI20MA-6A10,SI20MKA6-12,SI20UMC6M40,SI20UMC6B-75",93,,94,,21,,22,,64,184,"HK1003 -Blackpoint D2 - Rev.0E DD30092021;Modules_from_ZIN107;Modules_from_ZIN107"
1.1.1-168,SI20UMC6M40,"(RFP) READY FOR PIPE CONNECTION MODULE 20UMCM1Y",5121,"HK1003-Rev.0E-3",TT_FinMile,"57050",-,-,-,0,TK_NotStart,27/05/2022,,27/05/2022,,"SI20UMC6M15 FS","SI20UMC6M15","SI20PGB6H17 FF,SI20MAV6H15 FF","SI20PGB6H17,SI20MAV6H15",94,,94,,22,,22,,66,1408,"HK1003 -Blackpoint D2 - Rev.0E DD30092021;Modules_from_ZIN107;Modules_from_ZIN107"
1.1.1-169,SI20UMC4M40,"(OTD-OS) ON SITE MODULE 20UMCM1Y",5121,"HK1003-Rev.0E-3",TT_FinMile,"57050",-,-,-,0,TK_NotStart,13/05/2022,,13/05/2022,,"SI20UMC4M25 FS,SI20---4M26 FS","SI20UMC4M25,SI20---4M26","SI20UMC6M15 FS","SI20UMC6M15",92,,92,,21,,21,,64,184,"HK1003 -Blackpoint D2 - Rev.0E DD30092021;Modules_from_ZIN107;Modules_from_ZIN107"
1.1.1-170,SI20UMC4M25,"TRANSPORT MODULE 20UMCM1Y",5121,"HK1003-Rev.0E-3",TT_Task,"57050",-,-,-,0,TK_NotStart,09/04/2022,,13/05/2022,,"SI20UMC3M80 FS","SI20UMC3M80","SI20UMC4M40 FS","SI20UMC4M40",88,,92,,20,,21,,57,184,"HK1003 -Blackpoint D2 - Rev.0E DD30092021;Modules_from_ZIN107;Modules_from_ZIN107"
1.1.1-171,SI20LDK4M25,"TRANSPORT MODULE 20LDK00Y",5121,"HK1003-Rev.0E-3",TT_Task,"57050",-,-,-,0,TK_NotStart,16/03/2022,,19/04/2022,,"SI20LDK3M80 FS","SI20LDK3M80","SI20LDK4M40 FS","SI20LDK4M40",84,,89,,19,,20,,53,144,"HK1003 -Blackpoint D2 - Rev.0E DD30092021;Modules_from_ZIN107;Modules_from_ZIN107"
1.1.1-172,SI20LDK6M15,"MECHANICAL ERECTION MODULE 20LDK00Y",5121,"HK1003-Rev.0E-3",TT_Task,"57050",-,-,-,0,TK_NotStart,02/05/2022,,04/05/2022,,"SI20LDK2B05 FS,SI20LDK4M40 FS,SI20UMC5C57 FS","SI20LDK2B05,SI20LDK4M40,SI20UMC5C57","SI20LDK6B40 FS,SI20PDB7B16 FS,SI20LD8B110 FS,SI20SGC6J28 FS,SI20SGY7A30 FS,SI20UMC5E47 FS,SI20UMC6A-15 FS,SI20UMY6M10 FS","SI20LDK6B40,SI20PDB7B16,SI20LD8B110,SI20SGC6J28,SI20SGY7A30,SI20UMC5E47,SI20UMC6A-15,SI20UMY6M10",91,,91,,21,,21,,61,248,"HK1003 -Blackpoint D2 - Rev.0E DD30092021;Modules_from_ZIN107;Modules_from_ZIN107"
1.1.1-173,SI20LDK3M80,"(RFS) READY FOR SHIPMENT MODULE 20LDK00Y",5121,"HK1003-Rev.0E-3",TT_FinMile,"57050",-,-,-,0,TK_NotStart,02/03/2022,,02/03/2022,,"SI20LDK4M10 FS","SI20LDK4M10","SI20LDK4M25 FS","SI20LDK4M25",82,,82,,19,,19,,51,248,"HK1003 -Blackpoint D2 - Rev.0E DD30092021;Modules_from_ZIN107;Modules_from_ZIN107"
1.1.1-174,SI20LCA6M16,"MECHANICAL ERECTION MODULE 20LCA50Y",5121,"HK1003-Rev.0E-3",TT_Task,"57050",-,-,-,0,TK_NotStart,14/05/2022,,20/05/2022,,"SI20LCA2B05 FS,SI20LCA4M41 FS,SI20HA-6D17 FS,SI20ULA5-45 FS","SI20LCA2B05,SI20LCA4M41,SI20HA-6D17,SI20ULA5-45","SI20LCA8M10 FS,SI20LCA6M40 FS,SI20LCA6A15 FS,SI20UMY6B-15 FS","SI20LCA8M10,SI20LCA6M40,SI20LCA6A15,SI20UMY6B-15",93,,93,,21,,21,,64,144,"HK1003 -Blackpoint D2 - Rev.0E DD30092021;Modules_from_ZIN107;Modules_from_ZIN107"
1.1.1-175,SI20LCA4M23,"DELIVERY OF COMPONENTS MODULE_CONDENSATE RECIR. PUMP",5121,"HK1003-Rev.0E-3",TT_FinMile,"57050",-,-,-,0,TK_NotStart,10/01/2022,,10/01/2022,,"SI20LCA4B42 FF","SI20LCA4B42","SI20---3B13 FS","SI20---3B13",75,,75,,17,,17,,44,1240,"HK1003 -Blackpoint D2 - Rev.0E DD30092021;Modules_from_ZIN107;Modules_from_ZIN107"
1.1.1-176,SI20LCA4M41,"(OTD-OS) ON SITE MODULE 20LCA50Y",5121,"HK1003-Rev.0E-3",TT_FinMile,"57050",-,-,-,0,TK_NotStart,13/05/2022,,13/05/2022,,"SI20LCA4M26 FS,SI20---4M26 FS,SI20---3M116 FS","SI20LCA4M26,SI20---4M26,SI20---3M116","SI20LCA6M16 FS","SI20LCA6M16",92,,92,,21,,21,,64,144,"HK1003 -Blackpoint D2 - Rev.0E DD30092021;Modules_from_ZIN107;Modules_from_ZIN107"
1.1.1-177,SI20LCA4M26,"TRANSPORT MODULE 20LCA50Y",5121,"HK1003-Rev.0E-3",TT_Task,"57050",-,-,-,0,TK_NotStart,09/04/2022,,13/05/2022,,"SI20LCA3M81 FS","SI20LCA3M81","SI20LCA4M41 FS","SI20LCA4M41",88,,92,,20,,21,,57,144,"HK1003 -Blackpoint D2 - Rev.0E DD30092021;Modules_from_ZIN107;Modules_from_ZIN107"
1.1.1-178,SI--PGB2B85,"CONTRACT INTO FORCE CCW PUMP PGB",5121,"HK1003-Rev.0E-3",TT_Mile,"57050",-,-,-,100,TK_Complete,31/03/2021,31/03/2021,31/03/2021,31/03/2021,"SI--PGB2B80 FS","SI--PGB2B80","SI--PGB2B60 FS,SI--PGB2B65 FS,SI20PGB3B32 FS,SI--PGB2B86 FS","SI--PGB2B60,SI--PGB2B65,SI20PGB3B32,SI--PGB2B86",34,34,34,34,8,8,8,8,7,,"HK1003 -Blackpoint D2 - Rev.0E DD30092021;Modules_from_ZIN107;Modules_from_ZIN107"
1.1.1-179,SI--PGB2B80,"QUOTATION STAGE CCW PUMP PGB",5121,"HK1003-Rev.0E-3",TT_Task,"57050",-,-,-,100,TK_Complete,07/02/2021,07/02/2021,30/03/2021,30/03/2021,"SI20PGB2B86 FS,SI--PGB2B75 FS","SI20PGB2B86,SI--PGB2B75","SI--PGB2B85 FS","SI--PGB2B85",27,27,34,34,6,6,8,8,4,,"HK1003 -Blackpoint D2 - Rev.0E DD30092021;Modules_from_ZIN107;Modules_from_ZIN107"
1.1.1-180,SI--PGB2B75,"CONTRACT REVIEW / PREP. RFQ CCW PUMP PGB",5121,"HK1003-Rev.0E-3",TT_Task,"57050",-,-,-,100,TK_Complete,10/01/2021,10/01/2021,06/02/2021,06/02/2021,"SI20PGB2B86 FF,SI--3331-32 FS,SI--P--2-05 SS,SI-----1-01 FS","SI20PGB2B86,SI--3331-32,SI--P--2-05,SI-----1-01","SI20PGB2B87 FS,SI--PGB2B80 FS","SI20PGB2B87,SI--PGB2B80",23,23,27,27,5,5,6,6,1,,"HK1003 -Blackpoint D2 - Rev.0E DD30092021;Modules_from_ZIN107;Modules_from_ZIN107"
1.1.1-181,SI--PGB2B60,"(DF) INPUT FOR MS3 CCW PUMP PGB",5121,"HK1003-Rev.0E-3",TT_FinMile,"57050",-,-,-,100,TK_Complete,30/04/2021,30/04/2021,30/04/2021,30/04/2021,"SI--PGB2B85 FS","SI--PGB2B85","SI-----2H60 FS","SI-----2H60",38,38,38,38,9,9,9,9,10,,"HK1003 -Blackpoint D2 - Rev.0E DD30092021;Modules_from_ZIN107;Modules_from_ZIN107"
1.1.1-182,SI20PGB4B41,"(OTD) CCW PUMP PGB AT SKIDDER 20PGB",5121,"HK1003-Rev.0E-3",TT_FinMile,"57050",-,-,-,0,TK_NotStart,10/01/2022,,10/01/2022,,"SI20PGB4B25 FS","SI20PGB4B25","SI20PGB4M22 FS,SI20---3B10 FS","SI20PGB4M22,SI20---3B10",75,,75,,17,,17,,44,208,"HK1003 -Blackpoint D2 - Rev.0E DD30092021;Modules_from_ZIN107;Modules_from_ZIN107"
1.1.1-183,SI20PGB4B25,"TRANSPORT TO SKIDDER CCW PUMP 20PGB (arrival at Skidder no later than 10.01.22)",5121,"HK1003-Rev.0E-3",TT_Task,"57050",-,-,-,0,TK_NotStart,17/11/2021,,10/01/2022,,"SI20PGB3B80 FS","SI20PGB3B80","SI20PGB4B41 FS","SI20PGB4B41",67,,75,,15,,17,,38,208,"HK1003 -Blackpoint D2 - Rev.0E DD30092021;Modules_from_ZIN107;Modules_from_ZIN107"
1.1.1-184,SI20PGB3B32,"MANUFACTURING / SHOP TEST CCW PUMP 20PGB",5121,"HK1003-Rev.0E-3",TT_Task,"57050",-,-,-,90,TK_Active,31/03/2021,31/03/2021,19/10/2021,,"SI--PGB2B85 FS","SI--PGB2B85","SI20PGB3B70 FS,SI20PGB2B05 SS","SI20PGB3B70,SI20PGB2B05",34,34,63,,8,8,14,,7,208,"HK1003 -Blackpoint D2 - Rev.0E DD30092021;Modules_from_ZIN107;Modules_from_ZIN107"
1.1.1-185,SI20PGB3B80,"(RFS) READY FOR SHIPMENT CCW PUMP 20PGB",5121,"HK1003-Rev.0E-3",TT_FinMile,"57050",-,-,-,0,TK_NotStart,16/11/2021,,16/11/2021,,"SI20PGB4B10 FS,SI20PGB2B05 FS","SI20PGB4B10,SI20PGB2B05","SI20PGB4B25 FS","SI20PGB4B25",67,,67,,15,,15,,38,208,"HK1003 -Blackpoint D2 - Rev.0E DD30092021;Modules_from_ZIN107;Modules_from_ZIN107"
1.1.1-186,SI--PGB2B65,"(DF) INPUT FOR M2 CCW PUMP PGB",5121,"HK1003-Rev.0E-3",TT_FinMile,"57050",-,-,-,100,TK_Complete,30/04/2021,30/04/2021,30/04/2021,30/04/2021,"SI--PGB2B85 FS","SI--PGB2B85","SI---3P2A10 FS","SI---3P2A10",38,38,38,38,9,9,9,9,10,,"HK1003 -Blackpoint D2 - Rev.0E DD30092021;Modules_from_ZIN107;Modules_from_ZIN107"
1.1.1-187,SI20LDK4M40,"(OTD-OS) ON SITE MODULE 20LDK00Y",5121,"HK1003-Rev.0E-3",TT_FinMile,"57050",-,-,-,0,TK_NotStart,19/04/2022,,19/04/2022,,"SI20LDK4M25 FS,SI20---4M25 FS,SI20LDK2B91 FS","SI20LDK4M25,SI20---4M25,SI20LDK2B91","SI20LDK6M15 FS,SI20BZP7-26 FS","SI20LDK6M15,SI20BZP7-26",89,,89,,20,,20,,58,144,"HK1003 -Blackpoint D2 - Rev.0E DD30092021;Modules_from_ZIN107;Modules_from_ZIN107"
1.1.1-188,SI20MAW4M26,"TRANSPORT MODULE 20MAW50Y",5121,"HK1003-Rev.0E-3",TT_Task,"57050",-,-,-,0,TK_NotStart,03/03/2022,,06/04/2022,,"SI20MAW3M81 FS","SI20MAW3M81","SI20MAW4M41 FS","SI20MAW4M41",82,,87,,19,,20,,51,744,"HK1003 -Blackpoint D2 - Rev.0E DD30092021;Modules_from_ZIN107;Modules_from_ZIN107"
1.1.1-189,SI20MAW6M11,"MECHANICAL ERECTION MODULE 20MAW50Y",5121,"HK1003-Rev.0E-3",TT_Task,"57050",-,-,-,0,TK_NotStart,13/05/2022,,15/05/2022,,"SI20MAW4M41 FS,SI20SMM6-70 FS,SI20MAW6M10 FS,SI20---3M110 FS,SI20MAW6M12 FS","SI20MAW4M41,SI20SMM6-70,SI20MAW6M10,SI20---3M110,SI20MAW6M12","SI20MAW7-15 FS,SI20MAW8-10 FS,SI20MAW6-40 FS,SI20MAW6-16 FS,SI20UMC5E55 FS,SI20UMC6B-15 FF,SI20UMC6A-30 FF","SI20MAW7-15,SI20MAW8-10,SI20MAW6-40,SI20MAW6-16,SI20UMC5E55,SI20UMC6B-15,SI20UMC6A-30",92,,93,,21,,21,,64,456,"HK1003 -Blackpoint D2 - Rev.0E DD30092021;Modules_from_ZIN107;Modules_from_ZIN107"
1.1.1-190,SI20MAW3M81,"(RFS) READY FOR SHIPMENT MODULE 20MAW50Y",5121,"HK1003-Rev.0E-3",TT_FinMile,"57050",-,-,-,0,TK_NotStart,02/03/2022,,02/03/2022,,"SI20MAW4M11 FS","SI20MAW4M11","SI20MAW4M26 FS","SI20MAW4M26",82,,82,,19,,19,,51,744,"HK1003 -Blackpoint D2 - Rev.0E DD30092021;Modules_from_ZIN107;Modules_from_ZIN107"
1.1.1-191,SI20MAW4M41,"(OTD-OS) ON SITE MODULE 20MAW50Y",5121,"HK1003-Rev.0E-3",TT_FinMile,"57050",-,-,-,0,TK_NotStart,06/04/2022,,06/04/2022,,"SI20---4M25 FS,SI20MAW4M26 FS","SI20---4M25,SI20MAW4M26","SI20MAW6M11 FS","SI20MAW6M11",87,,87,,20,,20,,56,744,"HK1003 -Blackpoint D2 - Rev.0E DD30092021;Modules_from_ZIN107;Modules_from_ZIN107"
1.1.1-192,SI--LAC2B80,"QUOTATION STAGE FEEDWATER PUMP 20LAC",5121,"HK1003-Rev.0E-3",TT_Task,"57050",-,-,-,100,TK_Complete,10/02/2021,10/02/2021,08/04/2021,08/04/2021,"SI--LAC2B75 FS,SI--3332-76 FS,SI-----1-05 FS,SI--3331-32 FS,SI20LAC2B86 FS","SI--LAC2B75,SI--3332-76,SI-----1-05,SI--3331-32,SI20LAC2B86","SI--LAC2B85 FS","SI--LAC2B85",27,27,35,35,6,6,8,8,4,,"HK1003 -Blackpoint D2 - Rev.0E DD30092021;Modules_from_ZIN107;Modules_from_ZIN107"
1.1.1-193,SI20LAC3B30,"DETAIL DESIGN / MANUFACTURING / SHOP TEST FEEDWATER PUMP 20LAC",5121,"HK1003-Rev.0E-3",TT_Task,"57050",-,-,-,51,TK_Active,09/04/2021,09/04/2021,18/03/2022,,"SI--LAC2B85 FS,SI--HA-2-85 FS","SI--LAC2B85,SI--HA-2-85","SI20LAC3B70 FS","SI20LAC3B70",35,35,84,,8,8,19,,7,240,"HK1003 -Blackpoint D2 - Rev.0E DD30092021;Modules_from_ZIN107;Modules_from_ZIN107"
1.1.1-194,SI--LAC2B20,"CONFIRMED PUMP CURVES FEEDWATER PUMP 20LAC",5121,"HK1003-Rev.0E-3",TT_Mile,"57050",-,-,-,100,TK_Complete,14/05/2021,14/05/2021,14/05/2021,14/05/2021,"SI-----2M30 FS,SI--LAC2B75 FS","SI-----2M30,SI--LAC2B75","SI--L--2I45 FS,SI--L--2I46 FS","SI--L--2I45,SI--L--2I46",40,40,40,40,9,9,9,9,12,,"HK1003 -Blackpoint D2 - Rev.0E DD30092021;Modules_from_ZIN107;Modules_from_ZIN107"
1.1.1-195,SI--LAC2B60,"(DF) INPUT FOR MS3 FEEDWATER PUMP 20LAC",5121,"HK1003-Rev.0E-3",TT_FinMile,"57050",-,-,-,100,TK_Complete,04/05/2021,04/05/2021,04/05/2021,04/05/2021,"SI--LAC2B85 SS","SI--LAC2B85","SI-----2H60 FS,SI--ULA2-60 FS","SI-----2H60,SI--ULA2-60",39,39,39,39,9,9,9,9,11,,"HK1003 -Blackpoint D2 - Rev.0E DD30092021;Modules_from_ZIN107;Modules_from_ZIN107"
1.1.1-196,SI--LAC2B85,"CONTRACT INTO FORCE FEEDWATER PUMP 20LAC",5121,"HK1003-Rev.0E-3",TT_Mile,"57050",-,-,-,100,TK_Complete,09/04/2021,09/04/2021,09/04/2021,09/04/2021,"SI--LAC2B80 FS,SI-----1-05 FS","SI--LAC2B80,SI-----1-05","SI20LAC3B30 FS,SI--LAC2B65 SS,SI--LAC2B60 SS,SI--LAC2B86 FS","SI20LAC3B30,SI--LAC2B65,SI--LAC2B60,SI--LAC2B86",35,35,35,35,8,8,8,8,7,,"HK1003 -Blackpoint D2 - Rev.0E DD30092021;Modules_from_ZIN107;Modules_from_ZIN107"
1.1.1-197,SI20LAC4B40,"(OTD-OS) ON SITE FEEDWATER PUMP SKID 20LAC",5121,"HK1003-Rev.0E-3",TT_FinMile,"57050",-,-,-,0,TK_NotStart,10/06/2022,,10/06/2022,,"SI20LAC4B26 FS","SI20LAC4B26","SI20LAC6B15 FS","SI20LAC6B15",96,,96,,22,,22,,69,240,"HK1003 -Blackpoint D2 - Rev.0E DD30092021;Modules_from_ZIN107;Modules_from_ZIN107"
1.1.1-198,SI--LAC2B75,"CONTRACT REVIEW / PREP. RFQ FEEDWATER PUMP 20LAC",5121,"HK1003-Rev.0E-3",TT_Task,"57050",-,-,-,100,TK_Complete,23/12/2020,23/12/2020,09/02/2021,09/02/2021,"SI--L--2-05 SS,SI-----1-01 FS","SI--L--2-05,SI-----1-01","SI--LAC2B20 FS,SI--LAC2B80 FS,SI20LAC2B86 SS","SI--LAC2B20,SI--LAC2B80,SI20LAC2B86",20,20,27,27,4,4,6,6,1,,"HK1003 -Blackpoint D2 - Rev.0E DD30092021;Modules_from_ZIN107;Modules_from_ZIN107"
1.1.1-199,SI20LAC4B26,"TRANSPORT FEEDWATER PUMP SKID 20LAC",5121,"HK1003-Rev.0E-3",TT_Task,"57050",-,-,-,0,TK_NotStart,16/04/2022,,10/06/2022,,"SI20LAC3B80 FS","SI20LAC3B80","SI20LAC4B40 FS","SI20LAC4B40",89,,96,,20,,22,,58,240,"HK1003 -Blackpoint D2 - Rev.0E DD30092021;Modules_from_ZIN107;Modules_from_ZIN107"
1.1.1-200,SI--LAC2B65,"(DF) INPUT FOR M2 FEEDWATER PUMP 20LAC",5121,"HK1003-Rev.0E-3",TT_FinMile,"57050",-,-,-,100,TK_Complete,11/05/2021,11/05/2021,11/05/2021,11/05/2021,"SI--LAC2B85 SS","SI--LAC2B85","SI---2P2A10 FS","SI---2P2A10",40,40,40,40,9,9,9,9,12,,"HK1003 -Blackpoint D2 - Rev.0E DD30092021;Modules_from_ZIN107;Modules_from_ZIN107"
1.1.1-201,SI20LAC3B80,"(RFS) READY FOR SHIPMENT FEEDWATER PUMP SKID 20LAC",5121,"HK1003-Rev.0E-3",TT_FinMile,"57050",-,-,-,0,TK_NotStart,15/04/2022,,15/04/2022,,"SI20LAC4B10 FS","SI20LAC4B10","SI20LAC2B05 FS,SI20LAC4B26 FS","SI20LAC2B05,SI20LAC4B26",88,,88,,20,,20,,57,240,"HK1003 -Blackpoint D2 - Rev.0E DD30092021;Modules_from_ZIN107;Modules_from_ZIN107"
1.1.1-202,SI20MAW6M10,"MECHANICAL ERECTION MODULE 20MAW10Y",5121,"HK1003-Rev.0E-3",TT_Task,"57050",-,-,-,0,TK_NotStart,10/05/2022,,12/05/2022,,"SI20MAW4M40 FS,SI20SMM6-70 FS,SI20MAL6M10 FS,SI20---3M109 FS,SI20MAW6M13 FS","SI20MAW4M40,SI20SMM6-70,SI20MAL6M10,SI20---3M109,SI20MAW6M13","SI20MAW6-40 FS,SI20MAW6M11 FS,SI20MAG6M10 FS,SI20UMC5E63 FS,SI20UMC5E55 FS,SI20UMC6B-15 FF,SI20UMC6A-30 FS","SI20MAW6-40,SI20MAW6M11,SI20MAG6M10,SI20UMC5E63,SI20UMC5E55,SI20UMC6B-15,SI20UMC6A-30",92,,92,,21,,21,,64,456,"HK1003 -Blackpoint D2 - Rev.0E DD30092021;Modules_from_ZIN107;Modules_from_ZIN107"
1.1.1-203,SI20MAW3M80,"(RFS) READY FOR SHIPMENT MODULE 20MAW10Y",5121,"HK1003-Rev.0E-3",TT_FinMile,"57050",-,-,-,0,TK_NotStart,02/03/2022,,02/03/2022,,"SI20MAW4M10 FS","SI20MAW4M10","SI20MAW4M25 FS","SI20MAW4M25",82,,82,,19,,19,,51,720,"HK1003 -Blackpoint D2 - Rev.0E DD30092021;Modules_from_ZIN107;Modules_from_ZIN107"
1.1.1-204,SI20MAW4M40,"(OTD-OS) ON SITE MODULE 20MAW10Y",5121,"HK1003-Rev.0E-3",TT_FinMile,"57050",-,-,-,0,TK_NotStart,06/04/2022,,06/04/2022,,"SI20---4M25 FS,SI20MAW4M25 FS","SI20---4M25,SI20MAW4M25","SI20MAW6M10 FS","SI20MAW6M10",87,,87,,20,,20,,56,720,"HK1003 -Blackpoint D2 - Rev.0E DD30092021;Modules_from_ZIN107;Modules_from_ZIN107"
1.1.1-205,SI20MAW4M25,"TRANSPORT MODULE 20MAW10Y",5121,"HK1003-Rev.0E-3",TT_Task,"57050",-,-,-,0,TK_NotStart,03/03/2022,,06/04/2022,,"SI20MAW3M80 FS","SI20MAW3M80","SI20MAW4M40 FS","SI20MAW4M40",82,,87,,19,,20,,51,720,"HK1003 -Blackpoint D2 - Rev.0E DD30092021;Modules_from_ZIN107;Modules_from_ZIN107"
1.1.1-206,SI--PGB2D85,"CONTRACT INTO FORCE CCW EXPANSION TANK PGB",5121,"HK1003-Rev.0E-3",TT_Mile,"57050",-,-,-,100,TK_Complete,07/08/2021,07/08/2021,07/08/2021,07/08/2021,"SI--PGB2D80 FS","SI--PGB2D80","SI20PGB3D25 FS,SI20PGB3D33 FS,SI--PGB2D65 FS,SI--PGB2D61 FS","SI20PGB3D25,SI20PGB3D33,SI--PGB2D65,SI--PGB2D61",53,53,53,53,12,12,12,12,25,,"HK1003 -Blackpoint D2 - Rev.0E DD30092021;Modules_from_ZIN107;Modules_from_ZIN107"
1.1.1-207,SI--PGB2D61,"(DF) INPUT FOR MS3 CCW EXPANSION TANK PGB",5121,"HK1003-Rev.0E-3",TT_FinMile,"57050",-,-,-,100,TK_Complete,07/08/2021,07/08/2021,07/08/2021,07/08/2021,"SI-----1-03 FS,SI--PGB2D85 FS","SI-----1-03,SI--PGB2D85","SI-----2H60 FS","SI-----2H60",53,53,53,53,12,12,12,12,25,,"HK1003 -Blackpoint D2 - Rev.0E DD30092021;Modules_from_ZIN107;Modules_from_ZIN107"
1.1.1-208,SI--PGB2D80,"QUOTATION STAGE CCW EXPANSION TANK PGB",5121,"HK1003-Rev.0E-3",TT_Task,"57050",-,-,-,100,TK_Complete,22/04/2021,22/04/2021,06/08/2021,06/08/2021,"SI--PGB2D75 FS","SI--PGB2D75","SI--PGB2D85 FS","SI--PGB2D85",37,37,52,52,8,8,12,12,9,,"HK1003 -Blackpoint D2 - Rev.0E DD30092021;Modules_from_ZIN107;Modules_from_ZIN107"
1.1.1-209,SI--PGB2D75,"CONTRACT REVIEW / PREP. RFQ CCW EXPANSION TANK PGB",5121,"HK1003-Rev.0E-3",TT_Task,"57050",-,-,-,100,TK_Complete,18/03/2021,18/03/2021,21/04/2021,21/04/2021,"SI--3331-32 FS,SI20PGB2D86 FF,SI--P--2-05 FS,SI-----1-01 FS,SI-----1-05 FS,SI--P--2-00 FS","SI--3331-32,SI20PGB2D86,SI--P--2-05,SI-----1-01,SI-----1-05,SI--P--2-00","SI--PGB2D80 FS","SI--PGB2D80",32,32,37,37,7,7,8,8,6,,"HK1003 -Blackpoint D2 - Rev.0E DD30092021;Modules_from_ZIN107;Modules_from_ZIN107"
1.1.1-210,SI20PGB3D80,"(RFS) READY FOR SHIPMENT CCW EXPANSION TANK 20PGB",5121,"HK1003-Rev.0E-3",TT_FinMile,"57050",-,-,-,0,TK_NotStart,15/11/2021,,15/11/2021,,"SI20PGB4D10 FS","SI20PGB4D10","SI20PGB2D05 FS,SI20PGB4D25 FS","SI20PGB2D05,SI20PGB4D25",67,,67,,15,,15,,38,208,"HK1003 -Blackpoint D2 - Rev.0E DD30092021;Modules_from_ZIN107;Modules_from_ZIN107"
1.1.1-211,SI--PGB2D65,"(DF) INPUT FOR M2 CCW EXPANSION TANK PGB",5121,"HK1003-Rev.0E-3",TT_FinMile,"57050",-,-,-,100,TK_Complete,08/06/2021,08/06/2021,08/06/2021,08/06/2021,"SI--PGB2D85 FS","SI--PGB2D85","SI---3P2A10 FS,SI---3P2A10 FF","SI---3P2A10,SI---3P2A10",44,44,44,44,10,10,10,10,16,,"HK1003 -Blackpoint D2 - Rev.0E DD30092021;Modules_from_ZIN107;Modules_from_ZIN107"
1.1.1-212,SI20PGB4D42,"(OTD) CCW EXPANSION TANK PGB AT SKIDDER 20PGB",5121,"HK1003-Rev.0E-3",TT_FinMile,"57050",-,-,-,0,TK_NotStart,10/01/2022,,10/01/2022,,"SI20PGB4D25 FS","SI20PGB4D25","SI20PGB4M22 FS,SI20---3B10 FS","SI20PGB4M22,SI20---3B10",75,,75,,17,,17,,44,208,"HK1003 -Blackpoint D2 - Rev.0E DD30092021;Modules_from_ZIN107;Modules_from_ZIN107"
1.1.1-213,SI20PGB4D25,"TRANSPORT TO SKIDDER CCW EXPANSION TANK 20PGB",5121,"HK1003-Rev.0E-3",TT_Task,"57050",-,-,-,0,TK_NotStart,16/11/2021,,10/01/2022,,"SI20PGB3D80 FS","SI20PGB3D80","SI20PGB4D42 FS,SI20PGB2D05 FS","SI20PGB4D42,SI20PGB2D05",67,,75,,15,,17,,38,208,"HK1003 -Blackpoint D2 - Rev.0E DD30092021;Modules_from_ZIN107;Modules_from_ZIN107"
1.1.1-214,SI20PGB3D33,"PROCURMENT / PRE-FABRICATION CCW EXPANSION TANK 20PGB",5121,"HK1003-Rev.0E-3",TT_Task,"57050",-,-,-,73,TK_Active,14/08/2021,14/08/2021,16/10/2021,,"SI20PGB3D25 FS,SI--PGB2D85 FS","SI20PGB3D25,SI--PGB2D85","SI20PGB3D70 FS","SI20PGB3D70",54,54,63,,12,12,14,,25,208,"HK1003 -Blackpoint D2 - Rev.0E DD30092021;Modules_from_ZIN107;Modules_from_ZIN107"
1.1.1-215,SI20MAG4M40,"(OTD-OS) ON SITE MODULE 20MAG50Y",5121,"HK1003-Rev.0E-3",TT_FinMile,"57050",-,-,-,0,TK_NotStart,03/05/2022,,03/05/2022,,"SI20MAG4M25 FS,SI20---4M25 FS","SI20MAG4M25,SI20---4M25","SI20BZP7-10 FS,SI20MAG6M10 FS","SI20BZP7-10,SI20MAG6M10",91,,91,,21,,21,,61,896,"HK1003 -Blackpoint D2 - Rev.0E DD30092021;Modules_from_ZIN107;Modules_from_ZIN107"
1.1.1-216,SI20MAG4M25,"TRANSPORT MODULE 20MAG50Y",5121,"HK1003-Rev.0E-3",TT_Task,"57050",-,-,-,0,TK_NotStart,30/03/2022,,03/05/2022,,"SI20MAG3M80 FS","SI20MAG3M80","SI20MAG4M40 FS","SI20MAG4M40",86,,91,,20,,21,,54,896,"HK1003 -Blackpoint D2 - Rev.0E DD30092021;Modules_from_ZIN107;Modules_from_ZIN107"
1.1.1-217,SI20MAG6M10,"MECHANICAL ERECTION MODULE 20MAG50Y",5121,"HK1003-Rev.0E-3",TT_Task,"57050",-,-,-,0,TK_NotStart,13/05/2022,,15/05/2022,,"SI20MAG4M40 FS,SI20MAW6M10 FS,SI20---3M107 FS","SI20MAG4M40,SI20MAW6M10,SI20---3M107","SI20MAL6A15 FS,SI20MAG6A15 FS,SI20BZP7-10 FS,SI20MAG6A46 FS,SI20UMC6B-15 FF","SI20MAL6A15,SI20MAG6A15,SI20BZP7-10,SI20MAG6A46,SI20UMC6B-15",92,,93,,21,,21,,64,824,"HK1003 -Blackpoint D2 - Rev.0E DD30092021;Modules_from_ZIN107;Modules_from_ZIN107"
1.1.1-218,SI20PGB3C80,"(RFS) READY FOR SHIPMENT HEAT EXCHANGER 20PGB",5121,"HK1003-Rev.0E-3",TT_FinMile,"57050",-,-,-,100,TK_Complete,12/09/2021,12/09/2021,12/09/2021,12/09/2021,"SI20PGB4C10 FS,SI20PGB2C05 FS","SI20PGB4C10,SI20PGB2C05","SI20PGB4C25 FS","SI20PGB4C25",58,58,58,58,13,13,13,13,29,,"HK1003 -Blackpoint D2 - Rev.0E DD30092021;Modules_from_ZIN107;Modules_from_ZIN107"
1.1.1-219,SI--PGB2C65,"(DF) INPUT FOR M2 HEAT EXCHANGER PGB",5121,"HK1003-Rev.0E-3",TT_FinMile,"57050",-,-,-,100,TK_Complete,08/06/2021,08/06/2021,08/06/2021,08/06/2021,"SI--PGB2C80 FS,SI--PGB2C85 FS","SI--PGB2C80,SI--PGB2C85","SI---3P2A10 FS","SI---3P2A10",44,44,44,44,10,10,10,10,16,,"HK1003 -Blackpoint D2 - Rev.0E DD30092021;Modules_from_ZIN107;Modules_from_ZIN107"
1.1.1-220,SI--PGB2C62,"(DF) INPUT FOR MS3 HEAT EXCHANGER PGB",5121,"HK1003-Rev.0E-3",TT_FinMile,"57050",-,-,-,100,TK_Complete,26/05/2021,26/05/2021,26/05/2021,26/05/2021,"SI--PGB2C80 FS,SI--PGB2C85 FS","SI--PGB2C80,SI--PGB2C85","SI-----2H60 FS","SI-----2H60",42,42,42,42,9,9,9,9,14,,"HK1003 -Blackpoint D2 - Rev.0E DD30092021;Modules_from_ZIN107;Modules_from_ZIN107"
1.1.1-221,SI--PGB2C85,"CONTRACT INTO FORCE HEAT EXCHANGER PGB",5121,"HK1003-Rev.0E-3",TT_Mile,"57050",-,-,-,100,TK_Complete,12/04/2021,12/04/2021,12/04/2021,12/04/2021,"SI--PGB2C80 FS","SI--PGB2C80","SI20PGB3C41 FS,SI--PGB2C86 FS,SI--PGB2C62 FS,SI--PGB2C65 FS","SI20PGB3C41,SI--PGB2C86,SI--PGB2C62,SI--PGB2C65",36,36,36,36,8,8,8,8,8,,"HK1003 -Blackpoint D2 - Rev.0E DD30092021;Modules_from_ZIN107;Modules_from_ZIN107"
1.1.1-222,SI--PGB2C80,"QUOTATION STAGE HEAT EXCHANGER PGB",5121,"HK1003-Rev.0E-3",TT_Task,"57050",-,-,-,100,TK_Complete,15/02/2021,15/02/2021,11/04/2021,11/04/2021,"SI--PGB2C75 FS","SI--PGB2C75","SI--PGB2C65 FS,SI--PGB2C62 FS,SI20PGB3C25 FF,SI20PGB3C25 FS,SI--PGB2C85 FS","SI--PGB2C65,SI--PGB2C62,SI20PGB3C25,SI20PGB3C25,SI--PGB2C85",28,28,36,36,6,6,8,8,4,,"HK1003 -Blackpoint D2 - Rev.0E DD30092021;Modules_from_ZIN107;Modules_from_ZIN107"
1.1.1-223,SI--PGB2C75,"CONTRACT REVIEW / PREP. HEAT EXCHANGER PGB",5121,"HK1003-Rev.0E-3",TT_Task,"57050",-,-,-,100,TK_Complete,18/01/2021,18/01/2021,14/02/2021,14/02/2021,"SI20PGB2C86 FF,SI-----1-01 FS","SI20PGB2C86,SI-----1-01","SI--PGB2C80 FS","SI--PGB2C80",24,24,28,28,5,5,6,6,2,,"HK1003 -Blackpoint D2 - Rev.0E DD30092021;Modules_from_ZIN107;Modules_from_ZIN107"
1.1.1-224,SI20PGB4C44,"(OTD) HEAT EXCHANGER PGB AT SKIDDER",5121,"HK1003-Rev.0E-3",TT_FinMile,"57050",-,-,-,0,TK_NotStart,07/11/2021,,07/11/2021,,"SI20PGB4C25 FS","SI20PGB4C25","SI20PGB4M24 FS","SI20PGB4M24",66,,66,,15,,15,,37,1752,"HK1003 -Blackpoint D2 - Rev.0E DD30092021;Modules_from_ZIN107;Modules_from_ZIN107"
1.1.1-225,SI20PGB4C25,"TRANSPORT TO SKIDDER HEAT EXCHANGER 20PGB",5121,"HK1003-Rev.0E-3",TT_Task,"57050",-,-,-,30,TK_Active,13/09/2021,13/09/2021,07/11/2021,,"SI20PGB3C80 FS","SI20PGB3C80","SI20PGB4C44 FS","SI20PGB4C44",58,58,66,,13,13,15,,29,1752,"HK1003 -Blackpoint D2 - Rev.0E DD30092021;Modules_from_ZIN107;Modules_from_ZIN107"
1.1.1-226,SI20PGB3C41,"PROCURMENT / PRE-FABRICATION HEAT EXCHANGER 20PGB",5121,"HK1003-Rev.0E-3",TT_Task,"57050",-,-,-,100,TK_Complete,26/04/2021,26/04/2021,15/08/2021,15/08/2021,"SI20PGB3C25 FS,SI--PGB2C85 FS","SI20PGB3C25,SI--PGB2C85","SI20PGB3C70 FS,SI20PGB2C05 SS","SI20PGB3C70,SI20PGB2C05",38,38,54,54,8,8,12,12,10,,"HK1003 -Blackpoint D2 - Rev.0E DD30092021;Modules_from_ZIN107;Modules_from_ZIN107"
1.1.1-227,SI20MAL6M10,"MECHANICAL ERECTION MODULE 20MAL00YC",5121,"HK1003-Rev.0E-3",TT_Task,"57050",-,-,-,0,TK_NotStart,07/05/2022,,09/05/2022,,"SI20MAL4M40 FS,SI20SMM6-70 FS,SI20---3M108 FS","SI20MAL4M40,SI20SMM6-70,SI20---3M108","SI20MAL6A15 FS,SI20MAW6M10 FS,SI20UMC6B-15 SS","SI20MAL6A15,SI20MAW6M10,SI20UMC6B-15",92,,92,,21,,21,,63,0,"HK1003 -Blackpoint D2 - Rev.0E DD30092021;Modules_from_ZIN107;Modules_from_ZIN107"
1.1.1-228,SI20MAL3M80,"(RFS) READY FOR SHIPMENT MODULE 20MAL00YC",5121,"HK1003-Rev.0E-3",TT_FinMile,"57050",-,-,-,0,TK_NotStart,01/04/2022,,01/04/2022,,"SI20MAL4M10 FS","SI20MAL4M10","SI20MAL4M25 FS","SI20MAL4M25",86,,86,,20,,20,,54,0,"HK1003 -Blackpoint D2 - Rev.0E DD30092021;Modules_from_ZIN107;Modules_from_ZIN107"
1.1.1-229,SI20MAL4M40,"(OTD-OS) ON SITE MODULE 20MAL00YC",5121,"HK1003-Rev.0E-3",TT_FinMile,"57050",-,-,-,0,TK_NotStart,06/05/2022,,06/05/2022,,"SI20---4M25 FS,SI20MAL4M25 FS","SI20---4M25,SI20MAL4M25","SI20MAL6M10 FS","SI20MAL6M10",91,,91,,21,,21,,63,0,"HK1003 -Blackpoint D2 - Rev.0E DD30092021;Modules_from_ZIN107;Modules_from_ZIN107"
1.1.1-230,SI20MAL4M25,"TRANSPORT MODULE 20MAL00YC",5121,"HK1003-Rev.0E-3",TT_Task,"57050",-,-,-,0,TK_NotStart,02/04/2022,,06/05/2022,,"SI20MAL3M80 FS","SI20MAL3M80","SI20MAL4M40 FS","SI20MAL4M40",87,,91,,20,,21,,55,0,"HK1003 -Blackpoint D2 - Rev.0E DD30092021;Modules_from_ZIN107;Modules_from_ZIN107"
1.1.1-231,SI20UPY6M10,"MECHANICAL ERECTION MODULE 20UPY00Y",5121,"HK1003-Rev.0E-3",TT_Task,"57050",-,-,-,0,TK_NotStart,20/08/2022,,26/08/2022,,"SI20UPY4M40 FS,SI20UPY5P45 FS,SI20UMC5B49 FS,SI20PAB5-75 FS,SI20MAG6-40 FS,SI20---3M106 FS","SI20UPY4M40,SI20UPY5P45,SI20UMC5B49,SI20PAB5-75,SI20MAG6-40,SI20---3M106","SI20PAH6H15 FS,SI20PAH6-15 FS,SI20UPY6M11 FS,SI20UMC5E71 SS,SI20UMC5E67 SS,SI20UMC6B-15 FF","SI20PAH6H15,SI20PAH6-15,SI20UPY6M11,SI20UMC5E71,SI20UMC5E67,SI20UMC6B-15",107,,107,,24,,25,,78,360,"HK1003 -Blackpoint D2 - Rev.0E DD30092021;Modules_from_ZIN107;Modules_from_ZIN107"
1.1.1-232,SI20UMY6M16,"ERECTION RACK TOWER UMY00YG (2 Towers)",5121,"HK1003-Rev.0E-3",TT_Task,"57050",-,-,-,0,TK_NotStart,17/04/2022,,22/04/2022,,"SI20UMY6M05 FS,SI20UMY5-45 FS,SI20UMY6M18 FS,SI20EK-6-41 SS","SI20UMY6M05,SI20UMY5-45,SI20UMY6M18,SI20EK-6-41","SI20ULY6M15 FF,SI20ULY6M15 SS,SI20UMY6M76 FF,SI20UMY6M76 SS,SI20UMY6M17 FS,SI20UHA6-10 FS","SI20ULY6M15,SI20ULY6M15,SI20UMY6M76,SI20UMY6M76,SI20UMY6M17,SI20UHA6-10",89,,89,,20,,20,,58,216,"HK1003 -Blackpoint D2 - Rev.0E DD30092021;Modules_from_ZIN107;Modules_from_ZIN107"
1.1.1-233,SI20UMY6M18,"ERECTION RACK TOWER UMY00YE (2 Towers)",5121,"HK1003-Rev.0E-3",TT_Task,"57050",-,-,-,0,TK_NotStart,11/04/2022,,16/04/2022,,"SI20UMY5-45 FS,SI20UMY6M08 FS,SI20EK-6-41 SS,SI20UMY4M40 FS","SI20UMY5-45,SI20UMY6M08,SI20EK-6-41,SI20UMY4M40","SI20ULY6M15 FF,SI20ULY6M15 SS,SI20UMY6M76 FF,SI20UMY6M76 SS,SI20UMY6M16 FS,SI20UHA6-10 FS","SI20ULY6M15,SI20ULY6M15,SI20UMY6M76,SI20UMY6M76,SI20UMY6M16,SI20UHA6-10",88,,89,,20,,20,,57,216,"HK1003 -Blackpoint D2 - Rev.0E DD30092021;Modules_from_ZIN107;Modules_from_ZIN107"
1.1.1-234,SI20UMY6M06,"PRE-ASSEMBLY RACK TOWER ULY  (2 Towers)",5121,"HK1003-Rev.0E-3",TT_Task,"57050",-,-,-,0,TK_NotStart,26/04/2022,,30/04/2022,,"SI20UMY4M40 FS,SI20UMY4M41 FS,SI20UMY6M73 FS","SI20UMY4M40,SI20UMY4M41,SI20UMY6M73","SI20UMY6M15 FS,SI20UMY6M76 FF,SI20UMY6M76 SS","SI20UMY6M15,SI20UMY6M76,SI20UMY6M76",90,,91,,21,,21,,59,200,"HK1003 -Blackpoint D2 - Rev.0E DD30092021;Modules_from_ZIN107;Modules_from_ZIN107"
1.1.1-235,SI20UMY6M07,"PRE-ASSEMBLY RACK TOWER UMY00YK (2 Towers)",5121,"HK1003-Rev.0E-3",TT_Task,"57050",-,-,-,0,TK_NotStart,11/04/2022,,15/04/2022,,"SI20UMY4M40 FS,SI20UMY4M41 FS,SI20UMY6M05 FS","SI20UMY4M40,SI20UMY4M41,SI20UMY6M05","SI20UMY6M17 FS,SI20UMY6M76 FF,SI20UMY6M76 SS","SI20UMY6M17,SI20UMY6M76,SI20UMY6M76",88,,88,,20,,20,,57,272,"HK1003 -Blackpoint D2 - Rev.0E DD30092021;Modules_from_ZIN107;Modules_from_ZIN107"
1.1.1-236,SI20UMY6M05,"PRE-ASSEMBLY RACK TOWER UMY00YG (2 Towers)",5121,"HK1003-Rev.0E-3",TT_Task,"57050",-,-,-,0,TK_NotStart,06/04/2022,,10/04/2022,,"SI20UMY4M40 FF,SI20UMY4M41 FS,SI20UMY6M08 FS,SI20UMY6M08 FF","SI20UMY4M40,SI20UMY4M41,SI20UMY6M08,SI20UMY6M08","SI20UMY6M16 FS,SI20UMY6M76 FF,SI20UMY6M76 SS,SI20UMY6M07 FS","SI20UMY6M16,SI20UMY6M76,SI20UMY6M76,SI20UMY6M07",87,,88,,20,,20,,56,264,"HK1003 -Blackpoint D2 - Rev.0E DD30092021;Modules_from_ZIN107;Modules_from_ZIN107"
1.1.1-237,SI20UMY6M70,"PRESSURE TEST OF PIPING SYSTEMS AND HRSG (ON CONNECTED MODULES)",5121,"HK1003-Rev.0E-3",TT_Task,"57050",-,-,-,0,TK_NotStart,18/03/2023,,14/04/2023,,"SI20LCA6A46 FS,SI11LBA6H71 FF,SI20LBA6H70 FF,SI20LBB6J73 FF,SI20LBA6J73 FF,SI20GHC6-90& FS,SI20UHA6B-20 FS,SI20UMC6B-20 FS,SI20UHA6-20 FF,SI20UHW6A-20 FS,SI20UMC6-20 FS,SI20UMC6B-80 FS,SI20UMC6B-60 FS,SI20UMC6B-40 FS,SI20UMC6A-20 FS,SI20UMC6A-35 FS,SI20URA6-20 FS,SI20UEN620 FS,SI20UBF620 FS,SI20UEZ6A-15 FS,SI20UEZ6B-15 FS,SI20UVM6B10 FS,SI20UMY6B5 FS,SI20ULD6B20 FS,SI20UMY6B-20 FS,SI20HA-6-56 SS","SI20LCA6A46,SI11LBA6H71,SI20LBA6H70,SI20LBB6J73,SI20LBA6J73,SI20GHC6-90&,SI20UHA6B-20,SI20UMC6B-20,SI20UHA6-20,SI20UHW6A-20,SI20UMC6-20,SI20UMC6B-80,SI20UMC6B-60,SI20UMC6B-40,SI20UMC6A-20,SI20UMC6A-35,SI20URA6-20,SI20UEN620,SI20UBF620,SI20UEZ6A-15,SI20UEZ6B-15,SI20UVM6B10,SI20UMY6B5,SI20ULD6B20,SI20UMY6B-20,SI20HA-6-56","SI20--P6-73 FS,SI20ZTA6A0 FS,SI20--P6-77 FS,SI--2226-57 SS,SI--2222-37 SS,SI--L--8A25# FS,SI20HA-6A45 FS,SI20PA-6H70 FF,SI20---6A15# FF,SI20LAC8B25 FS,SI20GHC8H16 SS","SI20--P6-73,SI20ZTA6A0,SI20--P6-77,SI--2226-57,SI--2222-37,SI--L--8A25#,SI20HA-6A45,SI20PA-6H70,SI20---6A15#,SI20LAC8B25,SI20GHC8H16",137,,140,,31,,32,,93,0,"HK1003 -Blackpoint D2 - Rev.0E DD30092021;Modules_from_ZIN107;Modules_from_ZIN107"
1.1.1-238,SI20LAC4M40,"(OTD-OS) ON SITE MODULE 20LAC10Y (w/o Pump)",5121,"HK1003-Rev.0E-3",TT_FinMile,"57050",-,-,-,0,TK_NotStart,25/05/2022,,25/05/2022,,"SI20LAC4M25 FS,SI20---4M26 FS,SI20---3M115 FS","SI20LAC4M25,SI20---4M26,SI20---3M115","SI20LAC6M15 FS","SI20LAC6M15",94,,94,,22,,22,,66,240,"HK1003 -Blackpoint D2 - Rev.0E DD30092021;Modules_from_ZIN107;Modules_from_ZIN107"
1.1.1-239,SI20LAC4M25,"TRANSPORT MODULE 20LAC10Y (w/o Pump)",5121,"HK1003-Rev.0E-3",TT_Task,"57050",-,-,-,0,TK_NotStart,21/04/2022,,25/05/2022,,"SI20LAC3M80 FS","SI20LAC3M80","SI20LAC4M40 FS","SI20LAC4M40",89,,94,,20,,22,,58,240,"HK1003 -Blackpoint D2 - Rev.0E DD30092021;Modules_from_ZIN107;Modules_from_ZIN107"
1.1.1-240,SI20LAC6M15,"MECHANICAL ERECTION MODULE 20LAC10Y",5121,"HK1003-Rev.0E-3",TT_Task,"57050",-,-,-,0,TK_NotStart,26/05/2022,,22/06/2022,,"SI20LAC4M40 FS,SI20HA-6D17 FS","SI20LAC4M40,SI20HA-6D17","SI20LAC8B10 FS,SI20LAC6B15 FS,SI20LAC6M16 FS,SI20SGY7A27 FS,SI20SGC6J27 FS,SI20UMY6B-15 FF","SI20LAC8B10,SI20LAC6B15,SI20LAC6M16,SI20SGY7A27,SI20SGC6J27,SI20UMY6B-15",94,,98,,22,,23,,66,240,"HK1003 -Blackpoint D2 - Rev.0E DD30092021;Modules_from_ZIN107;Modules_from_ZIN107"
1.1.1-241,SI20UMY6M10,"PLACING AND ALIGNMENT OF MODULE - TRANU U1 ULY",5121,"HK1003-Rev.0E-3",TT_Task,"57050",-,-,-,0,TK_NotStart,18/05/2022,,18/05/2022,,"SI20BZP7-20 FS,SI20UMY4M40 FS,SI20SMM6-70 FS,SI20HA-6D17 FS,SI20BZP7-15 FS,SI20BZP7-15 FF,SI20UMY6M11 FS,SI20LDK6M15 FS","SI20BZP7-20,SI20UMY4M40,SI20SMM6-70,SI20HA-6D17,SI20BZP7-15,SI20BZP7-15,SI20UMY6M11,SI20LDK6M15","SI20USX5-10 FS,SI20UMY6M71 FS,SI20ULY6M15 FF,SI20ULY6M15 SS,SI20BZK7-187 FS,SI20MAA7A15 FS,SI20MAG7A15 FS,SI20MAJ7A15 FS,SI20MAL7A15 FS,SI20MAN7H15 FS,SI20MAV7H15 FS,SI20MAW7H15 FS,SI20MAX7H15 FS,SI20MB-7H15 FS,SI20MB-7J15 FS,SI20MBQ7H15 FS,SI20LBA7H15 FS,SI20LBA7H16 FS,SI20LBA7J15 FS,SI20LBA7J16 FS,SI20LBB7J15 FS,SI20LBB7J17 FS,SI20LBG7A17 FS,SI20LBG7A15 FS,SI20LAB7H15 FS,SI20LCA7A15 FS,SI20LCL7A15 FS,SI20LCW7H15 FS,SI20LDK7H16 FS,SI20EK-7H15 FS,SI20EK-7I15 FS,SI20PAB7A15 FS,SI20PAH7H15 FS,SI20PAR7A16 FS,SI20PCB7H15 FS,SI20PGB7H15 FS,SI20GHC7H15 FS,SI20GHC7H17 FS,SI20GHD7H15 FS,SI20QFB7H15 FS,SI20QU-7H15 FS,SI20BZK7E26 FS,SI20UMY6M72 FS","SI20USX5-10,SI20UMY6M71,SI20ULY6M15,SI20ULY6M15,SI20BZK7-187,SI20MAA7A15,SI20MAG7A15,SI20MAJ7A15,SI20MAL7A15,SI20MAN7H15,SI20MAV7H15,SI20MAW7H15,SI20MAX7H15,SI20MB-7H15,SI20MB-7J15,SI20MBQ7H15,SI20LBA7H15,SI20LBA7H16,SI20LBA7J15,SI20LBA7J16,SI20LBB7J15,SI20LBB7J17,SI20LBG7A17,SI20LBG7A15,SI20LAB7H15,SI20LCA7A15,SI20LCL7A15,SI20LCW7H15,SI20LDK7H16,SI20EK-7H15,SI20EK-7I15,SI20PAB7A15,SI20PAH7H15,SI20PAR7A16,SI20PCB7H15,SI20PGB7H15,SI20GHC7H15,SI20GHC7H17,SI20GHD7H15,SI20QFB7H15,SI20QU-7H15,SI20BZK7E26,SI20UMY6M72",93,,93,,21,,21,,65,144,"HK1003 -Blackpoint D2 - Rev.0E DD30092021;Modules_from_ZIN107;Modules_from_ZIN107"
1.1.1-242,SI20UMY6M12,"PLACING AND ALIGNMENT OF MODULE - UMY00E12/43",5121,"HK1003-Rev.0E-3",TT_Task,"57050",-,-,-,0,TK_NotStart,11/05/2022,,12/05/2022,,"SI20BZP7-20 FS,SI20UMY4M40 FS,SI20UMY6M15 FS","SI20BZP7-20,SI20UMY4M40,SI20UMY6M15","SI20USX5-10 FS,SI20UMY6M71 FS,SI20ULY6M15 FF,SI20ULY6M15 SS,SI20BZK7-187 FS,SI20MAA7A15 FS,SI20MAG7A15 FS,SI20MAJ7A15 FS,SI20MAL7A15 FS,SI20MAN7H15 FS,SI20MAV7H15 FS,SI20MAW7H15 FS,SI20MAX7H15 FS,SI20MB-7H15 FS,SI20MB-7J15 FS,SI20MBQ7H15 FS,SI20LBA7H15 FS,SI20LBA7H16 FS,SI20LBA7J15 FS,SI20LBA7J16 FS,SI20LBB7J15 FS,SI20LBB7J17 FS,SI20LBG7A17 FS,SI20LBG7A15 FS,SI20LAB7H15 FS,SI20LCA7A15 FS,SI20LCL7A15 FS,SI20LCW7H15 FS,SI20LDK7H16 FS,SI20EK-7H15 FS,SI20EK-7I15 FS,SI20PAB7A15 FS,SI20PAH7H15 FS,SI20PAR7A16 FS,SI20PCB7H15 FS,SI20PGB7H15 FS,SI20GHC7H15 FS,SI20GHC7H17 FS,SI20GHD7H15 FS,SI20QFB7H15 FS,SI20QU-7H15 FS,SI20BZK7E26 FS,SI20UMY6M11 FS","SI20USX5-10,SI20UMY6M71,SI20ULY6M15,SI20ULY6M15,SI20BZK7-187,SI20MAA7A15,SI20MAG7A15,SI20MAJ7A15,SI20MAL7A15,SI20MAN7H15,SI20MAV7H15,SI20MAW7H15,SI20MAX7H15,SI20MB-7H15,SI20MB-7J15,SI20MBQ7H15,SI20LBA7H15,SI20LBA7H16,SI20LBA7J15,SI20LBA7J16,SI20LBB7J15,SI20LBB7J17,SI20LBG7A17,SI20LBG7A15,SI20LAB7H15,SI20LCA7A15,SI20LCL7A15,SI20LCW7H15,SI20LDK7H16,SI20EK-7H15,SI20EK-7I15,SI20PAB7A15,SI20PAH7H15,SI20PAR7A16,SI20PCB7H15,SI20PGB7H15,SI20GHC7H15,SI20GHC7H17,SI20GHD7H15,SI20QFB7H15,SI20QU-7H15,SI20BZK7E26,SI20UMY6M11",92,,92,,21,,21,,64,168,"HK1003 -Blackpoint D2 - Rev.0E DD30092021;Modules_from_ZIN107;Modules_from_ZIN107"
1.1.1-243,SI20UMY6M11,"PLACING AND ALIGNMENT OF MODULE - UMY00G12/43",5121,"HK1003-Rev.0E-3",TT_Task,"57050",-,-,-,0,TK_NotStart,13/05/2022,,14/05/2022,,"SI20UMY4M40 FS,SI20BZP7-20 FS,SI20UMY5-45 FS,SI20UMY6M12 FS","SI20UMY4M40,SI20BZP7-20,SI20UMY5-45,SI20UMY6M12","SI20USX5-10 FS,SI20UMY6M71 FS,SI20ULY6M15 FF,SI20ULY6M15 SS,SI20BZK7-187 FS,SI20MAA7A15 FS,SI20MAG7A15 FS,SI20MAJ7A15 FS,SI20MAL7A15 FS,SI20MAN7H15 FS,SI20MAV7H15 FS,SI20MAW7H15 FS,SI20MAX7H15 FS,SI20MB-7H15 FS,SI20MB-7J15 FS,SI20MBQ7H15 FS,SI20LBA7H15 FS,SI20LBA7H16 FS,SI20LBA7J15 FS,SI20LBA7J16 FS,SI20LBB7J15 FS,SI20LBB7J17 FS,SI20LBG7A17 FS,SI20LBG7A15 FS,SI20LAB7H15 FS,SI20LCA7A15 FS,SI20LCL7A15 FS,SI20LCW7H15 FS,SI20LDK7H16 FS,SI20EK-7H15 FS,SI20EK-7I15 FS,SI20PAB7A15 FS,SI20PAH7H15 FS,SI20PAR7A16 FS,SI20PCB7H15 FS,SI20PGB7H15 FS,SI20GHC7H15 FS,SI20GHC7H17 FS,SI20GHD7H15 FS,SI20QFB7H15 FS,SI20QU-7H15 FS,SI20BZK7E26 FS,SI20UMY6M72 FS,SI20UMY6M10 FS","SI20USX5-10,SI20UMY6M71,SI20ULY6M15,SI20ULY6M15,SI20BZK7-187,SI20MAA7A15,SI20MAG7A15,SI20MAJ7A15,SI20MAL7A15,SI20MAN7H15,SI20MAV7H15,SI20MAW7H15,SI20MAX7H15,SI20MB-7H15,SI20MB-7J15,SI20MBQ7H15,SI20LBA7H15,SI20LBA7H16,SI20LBA7J15,SI20LBA7J16,SI20LBB7J15,SI20LBB7J17,SI20LBG7A17,SI20LBG7A15,SI20LAB7H15,SI20LCA7A15,SI20LCL7A15,SI20LCW7H15,SI20LDK7H16,SI20EK-7H15,SI20EK-7I15,SI20PAB7A15,SI20PAH7H15,SI20PAR7A16,SI20PCB7H15,SI20PGB7H15,SI20GHC7H15,SI20GHC7H17,SI20GHD7H15,SI20QFB7H15,SI20QU-7H15,SI20BZK7E26,SI20UMY6M72,SI20UMY6M10",92,,93,,21,,21,,64,168,"HK1003 -Blackpoint D2 - Rev.0E DD30092021;Modules_from_ZIN107;Modules_from_ZIN107"
1.1.1-244,SI20UMY6M08,"PRE-ASSEMBLY RACK TOWER UMY00YE (2 Towers)",5121,"HK1003-Rev.0E-3",TT_Task,"57050",-,-,-,0,TK_NotStart,31/03/2022,,04/04/2022,,"SI20UMY4M41 FS","SI20UMY4M41","SI20UMY6M18 FS,SI20UMY6M76 FF,SI20UMY6M76 SS,SI20UMY6M05 FS,SI20UMY6M05 FF","SI20UMY6M18,SI20UMY6M76,SI20UMY6M76,SI20UMY6M05,SI20UMY6M05",86,,87,,20,,20,,54,264,"HK1003 -Blackpoint D2 - Rev.0E DD30092021;Modules_from_ZIN107;Modules_from_ZIN107"
1.1.1-245,SI20UMY6M15,"ERECTION RACK TOWER ULY (2 Towers)",5121,"HK1003-Rev.0E-3",TT_Task,"57050",-,-,-,0,TK_NotStart,01/05/2022,,06/05/2022,,"SI20UMY6M06 FS,SI20UMY5-45 FS,SI20EK-6-41 SS,SI20UMY6M17 FS","SI20UMY6M06,SI20UMY5-45,SI20EK-6-41,SI20UMY6M17","SI20UMC6M16 FS,SI20ULY6M15 FF,SI20UMY6M76 FF,SI20UMY6M76 SS,SI20UMY6M12 FS,SI20UHA6-10 FS","SI20UMC6M16,SI20ULY6M15,SI20UMY6M76,SI20UMY6M76,SI20UMY6M12,SI20UHA6-10",91,,91,,21,,21,,60,200,"HK1003 -Blackpoint D2 - Rev.0E DD30092021;Modules_from_ZIN107;Modules_from_ZIN107"
1.1.1-246,SI20UMY6M17,"ERECTION RACK TOWER UMY00YK (2 Towers)",5121,"HK1003-Rev.0E-3",TT_Task,"57050",-,-,-,0,TK_NotStart,23/04/2022,,28/04/2022,,"SI20UMY5-45 FS,SI20UMY6M07 FS,SI20UMY6M16 FS,SI20EK-6-41 SS","SI20UMY5-45,SI20UMY6M07,SI20UMY6M16,SI20EK-6-41","SI20UMC6M16 FS,SI20ULY6M15 FF,SI20ULY6M15 SS,SI20UMY6M76 FF,SI20UMY6M76 SS,SI20UMY6M15 FS,SI20UHA6-10 FS","SI20UMC6M16,SI20ULY6M15,SI20ULY6M15,SI20UMY6M76,SI20UMY6M76,SI20UMY6M15,SI20UHA6-10",90,,90,,21,,21,,59,216,"HK1003 -Blackpoint D2 - Rev.0E DD30092021;Modules_from_ZIN107;Modules_from_ZIN107"
1.1.1-247,SI20ULY4M40,"(OTD-OS) ON SITE MODULE 20ULY00Y",5121,"HK1003-Rev.0E-3",TT_FinMile,"57050",-,-,-,0,TK_NotStart,06/04/2022,,06/04/2022,,"SI20ULY4M25 FS,SI20---4M25 FS","SI20ULY4M25,SI20---4M25","SI20BZP7-15 FS","SI20BZP7-15",87,,87,,20,,20,,56,248,"HK1003 -Blackpoint D2 - Rev.0E DD30092021;Modules_from_ZIN107;Modules_from_ZIN107"
1.1.1-248,SI20ULY4M25,"TRANSPORT MODULE 20ULY00Y",5121,"HK1003-Rev.0E-3",TT_Task,"57050",-,-,-,0,TK_NotStart,03/03/2022,,06/04/2022,,"SI20ULY3M80 FS","SI20ULY3M80","SI20ULY4M40 FS","SI20ULY4M40",82,,87,,19,,20,,51,248,"HK1003 -Blackpoint D2 - Rev.0E DD30092021;Modules_from_ZIN107;Modules_from_ZIN107"
1.1.1-249,SI20ULY7M16,"ELECTRICAL AND I&C ERECTION MODULE 20ULY00Y",5121,"HK1003-Rev.0E-3",TT_Task,"57050",-,-,-,0,TK_NotStart,28/05/2022,,03/06/2022,,"SI20UMY6M71 FS","SI20UMY6M71","SI20LAC8B10 FS,SI20BZK7D10# FF,SI20BZK7D11# SS","SI20LAC8B10,SI20BZK7D10#,SI20BZK7D11#",95,,95,,22,,22,,66,2632,"HK1003 -Blackpoint D2 - Rev.0E DD30092021;Modules_from_ZIN107;Modules_from_ZIN107"
1.1.1-250,SI20---3M28,"PROCUREMENT INSULATION AND TRACE HEATING",5121,"HK1003-Rev.0E-3",TT_Task,"57050",-,-,-,46,TK_Active,24/07/2021,24/07/2021,17/12/2021,,"SI-----2H85 SS","SI-----2H85","SI20---3B52 FS,SI20---3B45 FS,SI20---3B37 FS","SI20---3B52,SI20---3B45,SI20---3B37",51,51,71,,11,11,16,,22,392,"HK1003 -Blackpoint D2 - Rev.0E DD30092021;Modules_from_ZIN107;Modules_from_ZIN107"
1.1.1-251,SI20---3M20,"PROCUREMENT CABLE TRAYS, I&C, HVAC, FIFI",5121,"HK1003-Rev.0E-3",TT_Task,"57050",-,-,-,75,TK_Active,24/07/2021,24/07/2021,22/10/2021,,"SI-----2H85 FS","SI-----2H85","SI20---3B09 FF,SI20---3B06 FF,SI20---3B04 FS","SI20---3B09,SI20---3B06,SI20---3B04",51,51,63,,11,11,14,,22,464,"HK1003 -Blackpoint D2 - Rev.0E DD30092021;Modules_from_ZIN107;Modules_from_ZIN107"
1.1.1-252,SI-----2H85,"ORDER MTO MEDIUM LEAD ITEMS 3 (100%)",5121,"HK1003-Rev.0E-3",TT_Mile,"57050",-,-,-,100,TK_Complete,24/07/2021,24/07/2021,24/07/2021,24/07/2021,"SI20---2B85 FS","SI20---2B85","SI----P3A93 FS,SI20---3B33 FS,SI20---3M20 FS,SI20---3M28 SS,SI-----3H34 FS","SI----P3A93,SI20---3B33,SI20---3M20,SI20---3M28,SI-----3H34",51,51,51,51,11,11,11,11,23,,"HK1003 -Blackpoint D2 - Rev.0E DD30092021;Modules_from_ZIN107;Modules_from_ZIN107"
1.1.1-253,SI-----3H34,"PROCUREMENT MEDIUM LEAD ITEMS PART 3 (100%)",5121,"HK1003-Rev.0E-3",TT_Task,"57050",-,-,-,97,TK_Active,24/07/2021,24/07/2021,01/10/2021,,"SI-----2H85 FS","SI-----2H85","SI20---3B51 FS,SI20---3B44 FS,SI20-1P340 FF","SI20---3B51,SI20---3B44,SI20-1P340",51,51,60,,11,11,14,,23,256,"HK1003 -Blackpoint D2 - Rev.0E DD30092021;Modules_from_ZIN107;Modules_from_ZIN107"
1.1.1-254,SI20---3A27,"FABRICATION LONG LEAD SUPPORTS FOR SHIPMENT LOT 1 AND LOT 2",5121,"HK1003-Rev.0E-3",TT_Task,"57050",-,-,-,100,TK_Complete,01/05/2021,01/05/2021,03/09/2021,03/09/2021,"SI-----2F85 SS","SI-----2F85","SI20---3A80 FS","SI20---3A80",39,39,56,56,9,9,13,13,10,,"HK1003 -Blackpoint D2 - Rev.0E DD30092021;Modules_from_ZIN107;Modules_from_ZIN107"
1.1.1-255,SI20---4A25,"TRANSPORT LONG LEAD SUPPORTS FOR SHIPMENT LOT 1 AND LOT 2",5121,"HK1003-Rev.0E-3",TT_Task,"57050",-,-,-,53,TK_Active,04/09/2021,04/09/2021,22/10/2021,,"SI20---3A80 FS","SI20---3A80","SI20---3B45 FS,SI20---3B37 FS","SI20---3B45,SI20---3B37",57,57,63,,13,13,14,,28,840,"HK1003 -Blackpoint D2 - Rev.0E DD30092021;Modules_from_ZIN107;Modules_from_ZIN107"
1.1.1-256,SI20---3A80,"(RFS) READY FOR SHIPMENT LONG LEAD SUPPORTS FOR SHIPMENT LOT 1 AND LOT 2",5121,"HK1003-Rev.0E-3",TT_FinMile,"57050",-,-,-,100,TK_Complete,03/09/2021,03/09/2021,03/09/2021,03/09/2021,"SI20---3A27 FS","SI20---3A27","SI20---4A25 FS","SI20---4A25",56,56,56,56,13,13,13,13,28,,"HK1003 -Blackpoint D2 - Rev.0E DD30092021;Modules_from_ZIN107;Modules_from_ZIN107"
1.1.1-257,SI-----2F71,"PREPARATION ORDER MTO MEDIUM LEAD ITEMS (80%)",5121,"HK1003-Rev.0E-3",TT_Task,"57050",-,-,-,100,TK_Complete,15/01/2021,15/01/2021,30/04/2021,30/04/2021,"SI--3331-32 FS,SI20---2M55 FS,SI20---2M54 FS,SI20UMY2A67 SS,SI20UMY2A68 SS,SI-----1-05 FS","SI--3331-32,SI20---2M55,SI20---2M54,SI20UMY2A67,SI20UMY2A68,SI-----1-05","SI-----2F87 FS,SI-----2F85 FS","SI-----2F87,SI-----2F85",23,23,38,38,5,5,9,9,2,,"HK1003 -Blackpoint D2 - Rev.0E DD30092021;Modules_from_ZIN107;Modules_from_ZIN107"
1.1.1-258,SI20---3G26,"PROCUREMENT MEDIUM LEAD ITEMS 1 (80%)",5121,"HK1003-Rev.0E-3",TT_Task,"57050",-,-,-,100,TK_Complete,01/05/2021,01/05/2021,07/09/2021,07/09/2021,"SI-----2F87 FS,SI-----2F85 FS","SI-----2F87,SI-----2F85","SI20---3B51 FS,SI20---3B44 FS,SI20-1P340 FS","SI20---3B51,SI20---3B44,SI20-1P340",39,39,57,57,9,9,13,13,10,,"HK1003 -Blackpoint D2 - Rev.0E DD30092021;Modules_from_ZIN107;Modules_from_ZIN107"
1.1.1-259,SI-----2F85,"ORDER MTO MEDIUM LEAD ITEMS 1 (80%)",5121,"HK1003-Rev.0E-3",TT_Mile,"57050",-,-,-,100,TK_Complete,01/05/2021,01/05/2021,01/05/2021,01/05/2021,"SI-----2F71 FS,SI-----2E89 FS","SI-----2F71,SI-----2E89","SI20---3G25 FS,SI20---3A27 SS,SI20---2B85 SS,SI20---3G26 FS,SI20---2B85 FS","SI20---3G25,SI20---3A27,SI20---2B85,SI20---3G26,SI20---2B85",39,39,39,39,9,9,9,9,10,,"HK1003 -Blackpoint D2 - Rev.0E DD30092021;Modules_from_ZIN107;Modules_from_ZIN107"
1.1.1-260,SI20---3G25,"PROCUREMENT STEEL PROFILES (75%)",5121,"HK1003-Rev.0E-3",TT_Task,"57050",-,-,-,100,TK_Complete,01/05/2021,01/05/2021,30/07/2021,30/07/2021,"SI-----2F85 FS","SI-----2F85","SI20---3G71& FS,SI20---3G78 SS,SI20---3G76 SS,SI20---3G74 SS,SI20---3G72 SS","SI20---3G71&,SI20---3G78,SI20---3G76,SI20---3G74,SI20---3G72",39,39,51,51,9,9,12,12,10,,"HK1003 -Blackpoint D2 - Rev.0E DD30092021;Modules_from_ZIN107;Modules_from_ZIN107"
1.1.1-261,SI----P3I33,"PROCUREMENT CONTROL VALVES",5121,"HK1003-Rev.0E-3",TT_Task,"57050",-,-,-,94,TK_Active,08/04/2021,08/04/2021,10/10/2021,,"SI-----2E89 SS","SI-----2E89","SI20---3B09 FF,SI20---3B06 FS,SI20---3B04 FS,SI----P3I32 SS,SI----P3I31 SS","SI20---3B09,SI20---3B06,SI20---3B04,SI----P3I32,SI----P3I31",35,35,62,,8,8,14,,7,560,"HK1003 -Blackpoint D2 - Rev.0E DD30092021;Modules_from_ZIN107;Modules_from_ZIN107"
1.1.1-262,SI20PAB4-50,"(RFS) READY FOR SHIPMENT PIPING SYSTEM (OUTSIDE) 20PAB (FIRST DELIVERY)",5121,"HK1003-Rev.0E-3",TT_FinMile,"57050",-,-,-,100,TK_Complete,27/05/2021,27/05/2021,27/05/2021,27/05/2021,"SI20PAB3-30 FS","SI20PAB3-30","SI20PAB4-55 FS","SI20PAB4-55",42,42,42,42,9,9,9,9,14,,"HK1003 -Blackpoint D2 - Rev.0E DD30092021;Modules_from_ZIN107;Modules_from_ZIN107"
1.1.1-263,SI20UPY6M11,"CONNECTION PAB MODULE PIPING TO PAB CIVIL PIPING",5121,"HK1003-Rev.0E-3",TT_Task,"57050",-,-,-,0,TK_NotStart,27/08/2022,,07/10/2022,,"SI20UPY6M10 FS,SI20UMC5E72 FF,SI20UMC5E68 FF","SI20UPY6M10,SI20UMC5E72,SI20UMC5E68","SI20PAB8-25 FS,SI20PAD8-56 FS,SI20PAD8-45 FS","SI20PAB8-25,SI20PAD8-56,SI20PAD8-45",108,,113,,25,,26,,79,1568,"HK1003 -Blackpoint D2 - Rev.0E DD30092021;Modules_from_ZIN107;Modules_from_ZIN107"
1.1.1-264,SI20UEY4-130,"(OTD-OS) ON SITE MODULE 20UEY01/02Y",5121,"HK1003-Rev.0E-3",TT_FinMile,"57050",-,-,-,0,TK_NotStart,06/06/2022,,06/06/2022,,"SI20UEY4-125 FS,SI20---4M27 FS","SI20UEY4-125,SI20---4M27","SI20UEY6-105 FS,SI20UEY6-110 FS,SI20UEY6-100 FS,SI20UEY6-105 FF,SI20UEY6-100 FF,SI20UEY6-110 FF,SI20UEY6-90 FS,SI20UEY6-85 FS","SI20UEY6-105,SI20UEY6-110,SI20UEY6-100,SI20UEY6-105,SI20UEY6-100,SI20UEY6-110,SI20UEY6-90,SI20UEY6-85",96,,96,,22,,22,,68,1344,"HK1003 -Blackpoint D2 - Rev.0E DD30092021;Modules_from_ZIN107;Modules_from_ZIN107"
1.1.1-265,SI20UEY6-60,"ERECTION RACK TOWER T4 - 20UEY01",5121,"HK1003-Rev.0E-3",TT_Task,"57050",-,-,-,0,TK_NotStart,16/06/2022,,20/06/2022,,"SI20UEY6-10 FS,SI20MBR6-15 FS,SI20UEY5-100 FS,SI20UEY5-108 FS,SI20EK-6-41 SS","SI20UEY6-10,SI20MBR6-15,SI20UEY5-100,SI20UEY5-108,SI20EK-6-41","SI20UEY6-105 FS,SI20UEY6-110 FS,SI20UEY6-116 FF,SI20UEY6-116 SS","SI20UEY6-105,SI20UEY6-110,SI20UEY6-116,SI20UEY6-116",97,,98,,22,,22,,69,1232,"HK1003 -Blackpoint D2 - Rev.0E DD30092021;Modules_from_ZIN107;Modules_from_ZIN107"
1.1.1-266,SI20UEY6-40,"PRE-ASSEMBLY RACK TOWER T2 - 20UEY01",5121,"HK1003-Rev.0E-3",TT_Task,"57050",-,-,-,0,TK_NotStart,24/05/2022,,28/05/2022,,"SI20UEY4-131 FS,SI20UEY6-5 FS","SI20UEY4-131,SI20UEY6-5","SI20UEY6-80 FS,SI20UEY6-116 FF,SI20UEY6-116 SS,SI20UEY6-30 FS","SI20UEY6-80,SI20UEY6-116,SI20UEY6-116,SI20UEY6-30",94,,95,,22,,22,,66,1232,"HK1003 -Blackpoint D2 - Rev.0E DD30092021;Modules_from_ZIN107;Modules_from_ZIN107"
1.1.1-267,SI20UEY6-30,"PRE-ASSEMBLY RACK TOWER T3 - 20UEY01",5121,"HK1003-Rev.0E-3",TT_Task,"57050",-,-,-,0,TK_NotStart,29/05/2022,,02/06/2022,,"SI20UEY4-131 FS,SI20UEY6-40 FS","SI20UEY4-131,SI20UEY6-40","SI20UEY6-65 FS,SI20UEY6-116 FF,SI20UEY6-116 SS,SI20UEY6-10 FS","SI20UEY6-65,SI20UEY6-116,SI20UEY6-116,SI20UEY6-10",95,,95,,22,,22,,67,1232,"HK1003 -Blackpoint D2 - Rev.0E DD30092021;Modules_from_ZIN107;Modules_from_ZIN107"
1.1.1-268,SI20UEY6-10,"PRE-ASSEMBLY RACK TOWER T4 - 20UEY01",5121,"HK1003-Rev.0E-3",TT_Task,"57050",-,-,-,0,TK_NotStart,11/06/2022,,15/06/2022,,"SI20UEY4-131 FS,SI20UEY6-30 FS","SI20UEY4-131,SI20UEY6-30","SI20UEY6-60 FS,SI20UEY6-116 FF,SI20UEY6-116 SS","SI20UEY6-60,SI20UEY6-116,SI20UEY6-116",97,,97,,22,,22,,69,1232,"HK1003 -Blackpoint D2 - Rev.0E DD30092021;Modules_from_ZIN107;Modules_from_ZIN107"
1.1.1-269,SI20UEY6-100,"PLACING AND ALIGNMENT OF MODULE- 20UEY01 UNIT 1 (ACROSS ROAD 20UZA01)",5121,"HK1003-Rev.0E-3",TT_Task,"57050",-,-,-,0,TK_NotStart,30/06/2022,,01/07/2022,,"SI20UEY6-80 FS,SI20UEY4-130 FS,SI20UEY6-15 FS,SI20UEY4-130 FF,SI20BZP7-75 FS,SI20UEY6-50 FS,SI20UEY6-65 FS","SI20UEY6-80,SI20UEY4-130,SI20UEY6-15,SI20UEY4-130,SI20BZP7-75,SI20UEY6-50,SI20UEY6-65","SI20UEY6-110 FS,SI20UEY6-115 FS,SI20BZP7D18 FS","SI20UEY6-110,SI20UEY6-115,SI20BZP7D18",99,,99,,23,,23,,72,1160,"HK1003 -Blackpoint D2 - Rev.0E DD30092021;Modules_from_ZIN107;Modules_from_ZIN107"
1.1.1-270,SI20UEY6-110,"PLACING AND ALIGNMENT OF MODULE- 20UEY01 UNIT 3 (20UMX - 20UMY)",5121,"HK1003-Rev.0E-3",TT_Task,"57050",-,-,-,0,TK_NotStart,02/07/2022,,03/07/2022,,"SI20UEY4-130 FS,SI20UEY6-100 FS,SI20UEY6-105 FS,SI20UEY6-60 FS,SI20UEY4-130 FF,SI20UEY6-105 FF","SI20UEY4-130,SI20UEY6-100,SI20UEY6-105,SI20UEY6-60,SI20UEY4-130,SI20UEY6-105","SI20UEY6-115 FS,SI20BZP7D18 FS,SI20UEY6-85 FS","SI20UEY6-115,SI20BZP7D18,SI20UEY6-85",100,,100,,23,,23,,72,1160,"HK1003 -Blackpoint D2 - Rev.0E DD30092021;Modules_from_ZIN107;Modules_from_ZIN107"
1.1.1-271,SI20UEY6-105,"PLACING AND ALIGNMENT OF MODULE- 20UEY01 UNIT 2 (ACROSS DIFFUSER)",5121,"HK1003-Rev.0E-3",TT_Task,"57050",-,-,-,0,TK_NotStart,21/06/2022,,22/06/2022,,"SI20UEY6-60 FS,SI20UEY4-130 FS,SI20UEY6-65 FS,SI20UEY6-80 FS,SI20UEY4-130 FF,SI20BZP7-75 FS,SI20BZP7-75 FF","SI20UEY6-60,SI20UEY4-130,SI20UEY6-65,SI20UEY6-80,SI20UEY4-130,SI20BZP7-75,SI20BZP7-75","SI20UEY6-110 FS,SI20UEY6-115 FS,SI20UEY6-110 FF,SI20BZP7D18 FS","SI20UEY6-110,SI20UEY6-115,SI20UEY6-110,SI20BZP7D18",98,,98,,22,,23,,70,1232,"HK1003 -Blackpoint D2 - Rev.0E DD30092021;Modules_from_ZIN107;Modules_from_ZIN107"
1.1.1-272,SI20UEY6-80,"ERECTION RACK TOWER T2 - 20UEY01 (South of 20UMX)",5121,"HK1003-Rev.0E-3",TT_Task,"57050",-,-,-,0,TK_NotStart,29/05/2022,,02/06/2022,,"SI20UEY6-40 FS,SI20HA-6C22 FS,SI20HA-6D17 FS,SI20MBR6-15 FF,SI20UEY5-100 FS,SI20UEY6-15 FS,SI20UEY5-108 FS,SI20EK-6-41 SS","SI20UEY6-40,SI20HA-6C22,SI20HA-6D17,SI20MBR6-15,SI20UEY5-100,SI20UEY6-15,SI20UEY5-108,SI20EK-6-41","SI20UEY6-100 FS,SI20UEY6-105 FS,SI20UEY6-65 FS,SI20UEY6-116 FF,SI20UEY6-116 SS","SI20UEY6-100,SI20UEY6-105,SI20UEY6-65,SI20UEY6-116,SI20UEY6-116",95,,95,,22,,22,,67,1336,"HK1003 -Blackpoint D2 - Rev.0E DD30092021;Modules_from_ZIN107;Modules_from_ZIN107"
1.1.1-273,SI20UEY6-65,"ERECTION RACK TOWER T3 - 20UEY01 (North of 20UMX)",5121,"HK1003-Rev.0E-3",TT_Task,"57050",-,-,-,0,TK_NotStart,03/06/2022,,07/06/2022,,"SI20UEY6-30 FS,SI20MBR6-15 FS,SI20MBR6-15 FF,SI20UEY5-100 FS,SI20UEY6-80 FS,SI20UEY5-108 FS,SI20EK-6-41 SS","SI20UEY6-30,SI20MBR6-15,SI20MBR6-15,SI20UEY5-100,SI20UEY6-80,SI20UEY5-108,SI20EK-6-41","SI20UEY6-105 FS,SI20UEY6-100 FS,SI20UEY6-116 FF,SI20UEY6-116 SS","SI20UEY6-105,SI20UEY6-100,SI20UEY6-116,SI20UEY6-116",95,,96,,22,,22,,68,1336,"HK1003 -Blackpoint D2 - Rev.0E DD30092021;Modules_from_ZIN107;Modules_from_ZIN107"
1.1.1-274,SI-----2E90,"PRECONDITION FOR ORDERING OF PREFAB MODULES FULLFILLED",5121,"HK1003-Rev.0E-3",TT_Mile,"57050",-,-,-,100,TK_Complete,05/02/2021,05/02/2021,05/02/2021,05/02/2021,"SI-----2E92 FS","SI-----2E92","SI-----2E89 FS","SI-----2E89",26,26,26,26,6,6,6,6,4,,"HK1003 -Blackpoint D2 - Rev.0E DD30092021;Modules_from_ZIN107;Modules_from_ZIN107"
1.1.1-275,SI-----2E89,"PREPARATION RFQ / QUOTATION / ORDERING PREFAB. MODULES",5121,"HK1003-Rev.0E-3",TT_Task,"57050",-,-,-,100,TK_Complete,05/02/2021,05/02/2021,30/04/2021,30/04/2021,"SI-----2E90 FS","SI-----2E90","SI-----2E91 FS,SI-----2E86 SS,SI-----2E88 FS,SI-----2F85 FS,SI-----2E85 FS,SI-----2E94 SS,SI----P3I33 SS","SI-----2E91,SI-----2E86,SI-----2E88,SI-----2F85,SI-----2E85,SI-----2E94,SI----P3I33",26,26,38,38,6,6,9,9,4,,"HK1003 -Blackpoint D2 - Rev.0E DD30092021;Modules_from_ZIN107;Modules_from_ZIN107"
1.1.1-276,SI-----2E91,"CONTRACT INTO FORCE PREFAB. MODULES",5121,"HK1003-Rev.0E-3",TT_Mile,"57050",-,-,-,100,TK_Complete,01/05/2021,01/05/2021,01/05/2021,01/05/2021,"SI-----2E89 FS","SI-----2E89","SI20UMY2-85 FS,SI20-1P341 FS,SI20LAC2-10 FS,SI20UEY2-10 FS,SI20---3M80 FS,SI20LBG2C85 FS,SI--LDK2B85 FS","SI20UMY2-85,SI20-1P341,SI20LAC2-10,SI20UEY2-10,SI20---3M80,SI20LBG2C85,SI--LDK2B85",39,39,39,39,9,9,9,9,10,,"HK1003 -Blackpoint D2 - Rev.0E DD30092021;Modules_from_ZIN107;Modules_from_ZIN107"
1.1.1-277,SI20UMY2-85,"DETAIL DESIGN / DELTA ENGINEERING MODULAR PIPE RACK 20UMY00Y",5121,"HK1003-Rev.0E-3",TT_Task,"57050",-,-,-,100,TK_Complete,20/04/2021,20/04/2021,31/05/2021,31/05/2021,"SI-----2E91 FS","SI-----2E91","SI--2M-11 FS","SI--2M-11",37,37,43,43,8,8,10,10,9,,"HK1003 -Blackpoint D2 - Rev.0E DD30092021;Modules_from_ZIN107;Modules_from_ZIN107"
1.1.1-278,SI20---3B91,"MODULE ASSEMBLY (WITH PIPES)",5121,"HK1003-Rev.0E-3",TT_Task,"57050",-,-,-,0,TK_NotStart,06/01/2022,,06/03/2022,,"SI20-1P341 FS,SI20---3M87 FS,SI20---3M88 FS","SI20-1P341,SI20---3M87,SI20---3M88","SI20UMY3M70 FS","SI20UMY3M70",74,,83,,17,,19,,44,216,"HK1003 -Blackpoint D2 - Rev.0E DD30092021;Modules_from_ZIN107;Modules_from_ZIN107"
1.1.1-279,SI20-1P341,"MANUFACTURING / TRANSPORT PIPES FOR MODULE 20UMY00Y",5121,"HK1003-Rev.0E-3",TT_Task,"57050",-,-,-,57,TK_Active,24/05/2021,24/05/2021,05/01/2022,,"SI-----2E91 FS","SI-----2E91","SI20---3B91 FS","SI20---3B91",42,42,74,,9,9,17,,13,216,"HK1003 -Blackpoint D2 - Rev.0E DD30092021;Modules_from_ZIN107;Modules_from_ZIN107"
1.1.1-280,SI20---3M87,"PREPARE SHOP DRAWINGS / MANUFACTURING MODULE STEELWORKS 20UMY00Y",5121,"HK1003-Rev.0E-3",TT_Task,"57050",-,-,-,50,TK_Active,02/09/2021,02/09/2021,27/10/2021,,"SI--2M-11 FS","SI--2M-11","SI20---3B91 FS,SI20---3M88 FS","SI20---3B91,SI20---3M88",56,56,64,,13,13,15,,28,216,"HK1003 -Blackpoint D2 - Rev.0E DD30092021;Modules_from_ZIN107;Modules_from_ZIN107"
1.1.1-281,SI20---3M88,"MANUFACTURING MODULE STEELWORKS 20UMY00Y",5121,"HK1003-Rev.0E-3",TT_Task,"57050",-,-,-,0,TK_NotStart,28/10/2021,,05/01/2022,,"SI20---3M87 FS,SI--2222-30 FS","SI20---3M87,SI--2222-30","SI20---3B91 FS","SI20---3B91",64,,74,,15,,17,,36,216,"HK1003 -Blackpoint D2 - Rev.0E DD30092021;Modules_from_ZIN107;Modules_from_ZIN107"
1.1.1-282,SI20LAC6M16,"ELECTRICAL & I&C  ERECTION MODULE 20LAC10Y",5121,"HK1003-Rev.0E-3",TT_Task,"57050",-,-,-,0,TK_NotStart,23/06/2022,,03/08/2022,,"SI20LAC6M15 FS","SI20LAC6M15","SI20LAB6H15 FS,SI20BZK7D10# FF,SI20BZK7D11# SS","SI20LAB6H15,SI20BZK7D10#,SI20BZK7D11#",98,,104,,23,,24,,70,688,"HK1003 -Blackpoint D2 - Rev.0E DD30092021;Modules_from_ZIN107;Modules_from_ZIN107"
1.1.1-283,SI20LAC2-10,"DETAIL DESIGN / DELTA ENGINEERING MODULE 20LAC10Y",5121,"HK1003-Rev.0E-3",TT_Task,"57050",-,-,-,100,TK_Complete,01/05/2021,01/05/2021,25/06/2021,25/06/2021,"SI-----2E91 FS","SI-----2E91","SI20-1P342 FS,SI--2M-22 FS","SI20-1P342,SI--2M-22",39,39,46,46,9,9,10,10,10,,"HK1003 -Blackpoint D2 - Rev.0E DD30092021;Modules_from_ZIN107;Modules_from_ZIN107"
1.1.1-284,SI20---3B92,"MODULE ASSEMBLY (WITH PIPES) 20LAC10Y",5121,"HK1003-Rev.0E-3",TT_Task,"57050",-,-,-,0,TK_NotStart,27/01/2022,,20/04/2022,,"SI20-1P342 SS,SI20---3M89 FS,SI20---3M90 FS","SI20-1P342,SI20---3M89,SI20---3M90","SI20LAC3M70 FS,SI20---3M115 FS","SI20LAC3M70,SI20---3M115",77,,89,,18,,20,,47,240,"HK1003 -Blackpoint D2 - Rev.0E DD30092021;Modules_from_ZIN107;Modules_from_ZIN107"
1.1.1-285,SI20-1P342,"MANUFACTURING / TRANSPORT PIPES FOR MODULE 20LAC10Y",5121,"HK1003-Rev.0E-3",TT_Task,"57050",-,-,-,0,TK_NotStart,18/11/2021,,16/02/2022,,"SI20LAC2-10 FS,SI20---3M90 FF,SI--2222-30 FS","SI20LAC2-10,SI20---3M90,SI--2222-30","SI20---3B92 SS","SI20---3B92",67,,80,,15,,18,,39,320,"HK1003 -Blackpoint D2 - Rev.0E DD30092021;Modules_from_ZIN107;Modules_from_ZIN107"
1.1.1-286,SI20---3M89,"PREPARE SHOP DRAWINGS / MANUFACTURING MODULE STEELWORKS 20LAC10Y",5121,"HK1003-Rev.0E-3",TT_Task,"57050",-,-,-,48,TK_Active,03/09/2021,03/09/2021,28/10/2021,,"SI--2M-22 FS","SI--2M-22","SI20---3B92 FS,SI20---3M90 FS","SI20---3B92,SI20---3M90",56,56,64,,13,13,15,,28,240,"HK1003 -Blackpoint D2 - Rev.0E DD30092021;Modules_from_ZIN107;Modules_from_ZIN107"
1.1.1-287,SI20---3M90,"MANUFACTURING MODULE STEELWORKS 20LAC10Y",5121,"HK1003-Rev.0E-3",TT_Task,"57050",-,-,-,0,TK_NotStart,29/10/2021,,26/01/2022,,"SI20---3M89 FS,SI--2222-30 FS","SI20---3M89,SI--2222-30","SI20---3B92 FS,SI20-1P342 FF","SI20---3B92,SI20-1P342",64,,77,,15,,18,,36,240,"HK1003 -Blackpoint D2 - Rev.0E DD30092021;Modules_from_ZIN107;Modules_from_ZIN107"
1.1.1-288,SI20UEY2-10,"DETAIL DESIGN / DELTA ENGINEERING MODULAR PIPE RACK 20UEY01/02",5121,"HK1003-Rev.0E-3",TT_Task,"57050",-,-,-,100,TK_Complete,25/05/2021,25/05/2021,02/08/2021,02/08/2021,"SI-----2E91 FS","SI-----2E91","SI20UEY3-50 FS,SI--2M-23 FS","SI20UEY3-50,SI--2M-23",42,42,52,52,9,9,12,12,14,,"HK1003 -Blackpoint D2 - Rev.0E DD30092021;Modules_from_ZIN107;Modules_from_ZIN107"
1.1.1-289,SI20UEY3-105,"MODULE ASSEMBLY (WITH PIPES)",5121,"HK1003-Rev.0E-3",TT_Task,"57050",-,-,-,0,TK_NotStart,25/02/2022,,21/04/2022,,"SI20UEY3-50 FF,SI20UEY3-25 FS,SI20UEY3-55 FS","SI20UEY3-50,SI20UEY3-25,SI20UEY3-55","SI20UEY3-110 FS","SI20UEY3-110",81,,89,,19,,20,,51,1344,"HK1003 -Blackpoint D2 - Rev.0E DD30092021;Modules_from_ZIN107;Modules_from_ZIN107"
1.1.1-290,SI20UEY3-50,"MANUFACTURING / TRANSPORT PIPES FOR MODULE 20UEY01/02Y",5121,"HK1003-Rev.0E-3",TT_Task,"57050",-,-,-,11,TK_Active,07/09/2021,07/09/2021,04/04/2022,,"SI20UEY2-10 FS,SI--2M-23 FF,SI--2222-30 FS","SI20UEY2-10,SI--2M-23,SI--2222-30","SI20UEY3-105 FF","SI20UEY3-105",57,57,87,,13,13,20,,28,1344,"HK1003 -Blackpoint D2 - Rev.0E DD30092021;Modules_from_ZIN107;Modules_from_ZIN107"
1.1.1-291,SI20UEY3-25,"PREPARE SHOP DRAWINGS / MANUFACTURING MODULE STEELWORKS 20UEY01/02Y",5121,"HK1003-Rev.0E-3",TT_Task,"57050",-,-,-,0,TK_NotStart,02/10/2021,,26/11/2021,,"SI--2M-23 FS","SI--2M-23","SI20UEY3-105 FS,SI20UEY3-55 FS","SI20UEY3-105,SI20UEY3-55",61,,68,,14,,16,,31,1344,"HK1003 -Blackpoint D2 - Rev.0E DD30092021;Modules_from_ZIN107;Modules_from_ZIN107"
1.1.1-292,SI20UEY3-55,"MANUFACTURING MODULE STEELWORKS  20UEY01/02Y",5121,"HK1003-Rev.0E-3",TT_Task,"57050",-,-,-,0,TK_NotStart,27/11/2021,,24/02/2022,,"SI20UEY3-25 FS,SI--2222-30 FS,SI--2M-23 FS","SI20UEY3-25,SI--2222-30,SI--2M-23","SI20UEY3-105 FS","SI20UEY3-105",69,,81,,16,,19,,39,1344,"HK1003 -Blackpoint D2 - Rev.0E DD30092021;Modules_from_ZIN107;Modules_from_ZIN107"
1.1.1-293,SI20UEY6-5,"PRE-ASSEMBLY RACK TOWER T1 - 20UEY01",5121,"HK1003-Rev.0E-3",TT_Task,"57050",-,-,-,0,TK_NotStart,19/05/2022,,23/05/2022,,"SI20UEY4-131 FS","SI20UEY4-131","SI20UEY6-15 FS,SI20UEY6-116 FF,SI20UEY6-116 SS,SI20UEY6-40 FS","SI20UEY6-15,SI20UEY6-116,SI20UEY6-116,SI20UEY6-40",93,,94,,21,,22,,65,1232,"HK1003 -Blackpoint D2 - Rev.0E DD30092021;Modules_from_ZIN107;Modules_from_ZIN107"
1.1.1-294,SI20UEY6-15,"ERECTION RACK TOWER T1 - 20UEY01 (connection to 20UMY)",5121,"HK1003-Rev.0E-3",TT_Task,"57050",-,-,-,0,TK_NotStart,24/05/2022,,28/05/2022,,"SI20UEY6-5 FS,SI20UEY5-100 FS,SI20UEY5-100 FF,SI20UEY5-108 FS,SI20EK-6-41 SS","SI20UEY6-5,SI20UEY5-100,SI20UEY5-100,SI20UEY5-108,SI20EK-6-41","SI20UEY6-100 FS,SI20UEY6-80 FS,SI20UEY6-116 FF,SI20UEY6-116 SS","SI20UEY6-100,SI20UEY6-80,SI20UEY6-116,SI20UEY6-116",94,,95,,22,,22,,66,1336,"HK1003 -Blackpoint D2 - Rev.0E DD30092021;Modules_from_ZIN107;Modules_from_ZIN107"
1.1.1-295,SI20UEY6-35,"PRE-ASSEMBLY RACK TOWER T2 - 20UEY02",5121,"HK1003-Rev.0E-3",TT_Task,"57050",-,-,-,0,TK_NotStart,22/06/2022,,26/06/2022,,"SI20UEY4-132 FS,SI20UEY6-25 FS","SI20UEY4-132,SI20UEY6-25","SI20UEY6-70 FS,SI20UEY6-117 FF,SI20UEY6-117 SS,SI20UEY6-20 SS","SI20UEY6-70,SI20UEY6-117,SI20UEY6-117,SI20UEY6-20",98,,99,,23,,23,,70,1160,"HK1003 -Blackpoint D2 - Rev.0E DD30092021;Modules_from_ZIN107;Modules_from_ZIN107"
1.1.1-296,SI20UEY6-20,"PRE-ASSEMBLY RACK TOWER T3 - 20UEY02",5121,"HK1003-Rev.0E-3",TT_Task,"57050",-,-,-,0,TK_NotStart,22/06/2022,,26/06/2022,,"SI20UEY4-132 FS,SI20UEY6-35 SS","SI20UEY4-132,SI20UEY6-35","SI20UEY6-50 FS,SI20UEY6-117 FF,SI20UEY6-117 SS","SI20UEY6-50,SI20UEY6-117,SI20UEY6-117",98,,99,,23,,23,,70,1160,"HK1003 -Blackpoint D2 - Rev.0E DD30092021;Modules_from_ZIN107;Modules_from_ZIN107"
1.1.1-297,SI20UEY6-85,"PLACING AND ALIGNMENT OF MODULE- 20UEY02 UNIT 1",5121,"HK1003-Rev.0E-3",TT_Task,"57050",-,-,-,0,TK_NotStart,04/07/2022,,05/07/2022,,"SI20UEY6-70 FS,SI20UEY6-55 FS,SI20UEY4-130 FS,SI20BZP7-75 FS,SI20BZP7-171 FS,SI20UEY6-110 FS,SI20BZP7-171 FF,SI20BZP7-171 SS","SI20UEY6-70,SI20UEY6-55,SI20UEY4-130,SI20BZP7-75,SI20BZP7-171,SI20UEY6-110,SI20BZP7-171,SI20BZP7-171","SI20UEY6-95 FS,SI20BZP7D19 FS,SI20UEY6-90 FS","SI20UEY6-95,SI20BZP7D19,SI20UEY6-90",100,,100,,23,,23,,72,1160,"HK1003 -Blackpoint D2 - Rev.0E DD30092021;Modules_from_ZIN107;Modules_from_ZIN107"
1.1.1-298,SI20UEY6-90,"PLACING AND ALIGNMENT OF MODULE- 20UEY02 UNIT 2",5121,"HK1003-Rev.0E-3",TT_Task,"57050",-,-,-,0,TK_NotStart,06/07/2022,,07/07/2022,,"SI20UEY6-50 FS,SI20UEY6-70 FS,SI20UEY4-130 FS,SI20UEY6-85 FS","SI20UEY6-50,SI20UEY6-70,SI20UEY4-130,SI20UEY6-85","SI20UEY6-95 FS,SI20BZP7D19 FS","SI20UEY6-95,SI20BZP7D19",100,,100,,23,,23,,72,1160,"HK1003 -Blackpoint D2 - Rev.0E DD30092021;Modules_from_ZIN107;Modules_from_ZIN107"
1.1.1-299,SI20UEY6-70,"ERECTION RACK TOWER T2 - 20UEY02 (east of 20UGU03)",5121,"HK1003-Rev.0E-3",TT_Task,"57050",-,-,-,0,TK_NotStart,30/06/2022,,02/07/2022,,"SI20UEY6-35 FS,SI20UEY6-50 FS,SI20UEY5-100 FS,SI20UEY5-104 FS,SI20UEY5-108 FS,SI20EK-6-41 SS","SI20UEY6-35,SI20UEY6-50,SI20UEY5-100,SI20UEY5-104,SI20UEY5-108,SI20EK-6-41","SI20UEY6-85 FS,SI20UEY6-90 FS,SI20UEY6-117 FF,SI20UEY6-117 SS","SI20UEY6-85,SI20UEY6-90,SI20UEY6-117,SI20UEY6-117",99,,100,,23,,23,,72,1168,"HK1003 -Blackpoint D2 - Rev.0E DD30092021;Modules_from_ZIN107;Modules_from_ZIN107"
1.1.1-300,SI20UEY6-50,"ERECTION RACK TOWER T3 - 20UEY02 (connection to 20UEY01 & 20UEY05)",5121,"HK1003-Rev.0E-3",TT_Task,"57050",-,-,-,0,TK_NotStart,27/06/2022,,29/06/2022,,"SI20UEY6-20 FS,SI20UEY5-100 FS,SI20UEY5-104 FS,SI20UEY5-108 FS,SI20EK-6-41 SS","SI20UEY6-20,SI20UEY5-100,SI20UEY5-104,SI20UEY5-108,SI20EK-6-41","SI20UEY6-90 FS,SI20UEY6-70 FS,SI20UEY6-100 FS,SI20UEY6-117 FF,SI20UEY6-117 SS","SI20UEY6-90,SI20UEY6-70,SI20UEY6-100,SI20UEY6-117,SI20UEY6-117",99,,99,,23,,23,,71,1160,"HK1003 -Blackpoint D2 - Rev.0E DD30092021;Modules_from_ZIN107;Modules_from_ZIN107"
1.1.1-301,SI20UEY6-25,"PRE-ASSEMBLY RACK TOWER T1 - 20UEY02",5121,"HK1003-Rev.0E-3",TT_Task,"57050",-,-,-,0,TK_NotStart,17/06/2022,,21/06/2022,,"SI20UEY4-132 FS","SI20UEY4-132","SI20UEY6-55 FS,SI20UEY6-117 FF,SI20UEY6-117 SS,SI20UEY6-35 FS","SI20UEY6-55,SI20UEY6-117,SI20UEY6-117,SI20UEY6-35",97,,98,,22,,22,,70,1160,"HK1003 -Blackpoint D2 - Rev.0E DD30092021;Modules_from_ZIN107;Modules_from_ZIN107"
1.1.1-302,SI20UEY6-55,"ERECTION RACK TOWER T1 - 20UEY02 (connection to 20UEY03)",5121,"HK1003-Rev.0E-3",TT_Task,"57050",-,-,-,0,TK_NotStart,22/06/2022,,24/06/2022,,"SI20UEY6-25 FS,SI20UEY5-100 FS,SI20UEY5-104 FS,SI20UEY5-108 FS,SI20EK-6-41 SS","SI20UEY6-25,SI20UEY5-100,SI20UEY5-104,SI20UEY5-108,SI20EK-6-41","SI20UEY6-85 FS,SI20UEY6-117 FF,SI20UEY6-117 SS","SI20UEY6-85,SI20UEY6-117,SI20UEY6-117",98,,98,,23,,23,,70,1232,"HK1003 -Blackpoint D2 - Rev.0E DD30092021;Modules_from_ZIN107;Modules_from_ZIN107"
1.1.1-303,SI--LDK2B87,"(DF) INPUT FOR VEL CONDENSATE POLISHING PUMP 20LDK",5121,"HK1003-Rev.0E-3",TT_Mile,"57050",-,-,-,100,TK_Complete,07/05/2021,07/05/2021,07/05/2021,07/05/2021,"SI--LDK2B86 FS","SI--LDK2B86","SP--B--2-61 FS","SP--B--2-61",39,39,39,39,9,9,9,9,11,,"HK1003 -Blackpoint D2 - Rev.0E DD30092021;Modules_from_ZIN107;Modules_from_ZIN107"
1.1.1-304,SI--PGB2B86,"(DF) INPUT FOR VEL CCW PUMP PGB",5121,"HK1003-Rev.0E-3",TT_Mile,"57050",-,-,-,100,TK_Complete,17/04/2021,17/04/2021,17/04/2021,17/04/2021,"SI--PGB2B85 FS","SI--PGB2B85","SP--B--2-61 FS","SP--B--2-61",37,37,37,37,8,8,8,8,9,,"HK1003 -Blackpoint D2 - Rev.0E DD30092021;Modules_from_ZIN107;Modules_from_ZIN107"
1.1.1-305,SI--LAC2B86,"(DF) INPUT FOR VEL FEEDWATER PUMP 20LAC",5121,"HK1003-Rev.0E-3",TT_Mile,"57050",-,-,-,100,TK_Complete,05/05/2021,05/05/2021,05/05/2021,05/05/2021,"SI--LAC2B85 FS","SI--LAC2B85","SP--B--2-61 FS","SP--B--2-61",39,39,39,39,9,9,9,9,11,,"HK1003 -Blackpoint D2 - Rev.0E DD30092021;Modules_from_ZIN107;Modules_from_ZIN107"
1.1.1-306,SI--LCA2B86,"(DF) INPUT FOR VEL CONDENSATE RECIRC.PUMP LCA51",5121,"HK1003-Rev.0E-3",TT_Mile,"57050",-,-,-,100,TK_Complete,07/05/2021,07/05/2021,07/05/2021,07/05/2021,"SI--LCA2B85 FS","SI--LCA2B85","SP--B--2-61 FS","SP--B--2-61",39,39,39,39,9,9,9,9,11,,"HK1003 -Blackpoint D2 - Rev.0E DD30092021;Modules_from_ZIN107;Modules_from_ZIN107"
1.1.1-307,SI--PDB2B86,"(DF) INPUT FOR VEL  DEBRIS FILTER 20PDB",5121,"HK1003-Rev.0E-3",TT_Mile,"57050",-,-,-,100,TK_Complete,24/06/2021,24/06/2021,24/06/2021,24/06/2021,"SI--PDB2B85 FS","SI--PDB2B85","SP--B--2-61 FS","SP--B--2-61",46,46,46,46,10,10,10,10,19,,"HK1003 -Blackpoint D2 - Rev.0E DD30092021;Modules_from_ZIN107;Modules_from_ZIN107"
1.1.1-308,SI--PGB2C86,"(DF) INPUT FOR VEL  HEAT EXCHANGER PGB",5121,"HK1003-Rev.0E-3",TT_Mile,"57050",-,-,-,100,TK_Complete,10/05/2021,10/05/2021,10/05/2021,10/05/2021,"SI--PGB2C85 FS","SI--PGB2C85","SP--B--2-61 FS","SP--B--2-61",40,40,40,40,9,9,9,9,12,,"HK1003 -Blackpoint D2 - Rev.0E DD30092021;Modules_from_ZIN107;Modules_from_ZIN107"
1.1.1-309,SI-----2E92,"PREPARATION MTO's FOR ORDERING OF PREFAB MODULES",5121,"HK1003-Rev.0E-3",TT_Task,"57050",-,-,-,100,TK_Complete,01/12/2020,01/12/2020,04/02/2021,04/02/2021,"SI--3332-61 FS","SI--3332-61","SI-----2E90 FS","SI-----2E90",17,17,26,26,4,4,6,6,1,,"HK1003 -Blackpoint D2 - Rev.0E DD30092021;Modules_from_ZIN107;Modules_from_ZIN107"
1.1.1-310,SI-----2E93,"(DF) INPUT FOR VEL PIPING & BUILDING BLOCK / ORDER MTO LONG LEAD ITEMS (80%) & VALVES (INCL. CONTRACTUAL MTO)",5121,"HK1003-Rev.0E-3",TT_Mile,"57050",-,-,-,100,TK_Complete,29/05/2021,29/05/2021,29/05/2021,29/05/2021,"SI-----2E85 FS","SI-----2E85","SP--B--2-61 FS","SP--B--2-61",43,43,43,43,10,10,10,10,14,,"HK1003 -Blackpoint D2 - Rev.0E DD30092021;Modules_from_ZIN107;Modules_from_ZIN107"
1.1.1-311,SI20ULY5-145,"INSTALLATION STEEL STRUCTURE 20ULY01",5121,"HK1003-Rev.0E-3",TT_Task,"57050",-,-,-,0,TK_NotStart,28/07/2022,,03/08/2022,,"SI20ULY5-60 FS,SI20ULY5-115 FS","SI20ULY5-60,SI20ULY5-115","SI20BZP7-115 FS","SI20BZP7-115",103,,104,,24,,24,,75,968,"HK1003 -Blackpoint D2 - Rev.0E DD30092021;Modules_from_ZIN107;Modules_from_ZIN107"
1.1.1-312,SI20ULY4-110,"(OTD-OS) ON SITE STEEL STRUCTURE 20ULY01",5121,"HK1003-Rev.0E-3",TT_FinMile,"57050",-,-,-,0,TK_NotStart,15/06/2022,,15/06/2022,,"SI20ULY4-105 FS","SI20ULY4-105","SI20ULY5-115 FS,SI20BZP7-115 FS","SI20ULY5-115,SI20BZP7-115",97,,97,,22,,22,,69,968,"HK1003 -Blackpoint D2 - Rev.0E DD30092021;Modules_from_ZIN107;Modules_from_ZIN107"
1.1.1-313,SI20ULY2-65,"DETAIL DESIGN / DELTA ENGINEERING STEEL STRUCTURE 20ULY01",5121,"HK1003-Rev.0E-3",TT_Task,"57050",-,-,-,100,TK_Complete,11/06/2021,11/06/2021,03/09/2021,03/09/2021,"SI--UMY2-60 FS","SI--UMY2-60","SI20ULY2-70 FS","SI20ULY2-70",44,44,56,56,10,10,13,13,16,,"HK1003 -Blackpoint D2 - Rev.0E DD30092021;Modules_from_ZIN107;Modules_from_ZIN107"
1.1.1-314,SI20ULY2-75,"PREPARE SHOP DRAWINGS  STEELWORKS 20ULY01",5121,"HK1003-Rev.0E-3",TT_Task,"57050",-,-,-,0,TK_NotStart,11/11/2021,,05/01/2022,,"SI20ULY2-80 FF","SI20ULY2-80","SI20ULY3-85 FS","SI20ULY3-85",66,,74,,15,,17,,38,968,"HK1003 -Blackpoint D2 - Rev.0E DD30092021;Modules_from_ZIN107;Modules_from_ZIN107"
1.1.1-315,SI20ULY3-85,"MANUFACTURING STEEL STRUCTURE 20ULY01",5121,"HK1003-Rev.0E-3",TT_Task,"57050",-,-,-,0,TK_NotStart,06/01/2022,,13/04/2022,,"SI20ULY2-75 FS,SI--2222-30 FS","SI20ULY2-75,SI--2222-30","SI20ULY4-90 FS","SI20ULY4-90",74,,88,,17,,20,,44,968,"HK1003 -Blackpoint D2 - Rev.0E DD30092021;Modules_from_ZIN107;Modules_from_ZIN107"
1.1.1-316,SI20ULY5-115,"PRE-ASSEMBLY STEEL STRUCTURE 20ULY01",5121,"HK1003-Rev.0E-3",TT_Task,"57050",-,-,-,0,TK_NotStart,30/06/2022,,27/07/2022,,"SI20ULY4-110 FS","SI20ULY4-110","SI20BZP7-115 FS,SI20ULY5-145 FS","SI20BZP7-115,SI20ULY5-145",99,,103,,23,,24,,72,968,"HK1003 -Blackpoint D2 - Rev.0E DD30092021;Modules_from_ZIN107;Modules_from_ZIN107"
1.1.1-317,SI20PAB4-56,"(RFS) READY FOR SHIPMENT PIPING SYSTEM (OUTSIDE) 20PAB (LAST DELIVERY)",5121,"HK1003-Rev.0E-3",TT_FinMile,"57050",-,-,-,100,TK_Complete,26/06/2021,26/06/2021,26/06/2021,26/06/2021,"SI20PAB3-30 FS","SI20PAB3-30","SI20PAB4-57 FS","SI20PAB4-57",47,47,47,47,10,10,10,10,19,,"HK1003 -Blackpoint D2 - Rev.0E DD30092021;Modules_from_ZIN107;Modules_from_ZIN107"
1.1.1-318,SI--LDK2B89,"(DF) PREL. INPUT FOR BB MS3 CONDENSATE POLISHING PUMP LDK (LOADS / SIZE)",5121,"HK1003-Rev.0E-3",TT_FinMile,"57050",-,-,-,100,TK_Complete,09/04/2021,09/04/2021,09/04/2021,09/04/2021,"SI--LDK2B86 FS","SI--LDK2B86","SI-----2G60 FS","SI-----2G60",35,35,35,35,8,8,8,8,8,,"HK1003 -Blackpoint D2 - Rev.0E DD30092021;Modules_from_ZIN107;Modules_from_ZIN107"
1.1.1-319,SI--LCA2B87,"(DF) PREL. INPUT FOR BB MS3 CONDENSATE RECIRC.PUMP LCA51 (LOADS / SIZE)",5121,"HK1003-Rev.0E-3",TT_FinMile,"57050",-,-,-,100,TK_Complete,09/04/2021,09/04/2021,09/04/2021,09/04/2021,"SI--LCA2B85 FS","SI--LCA2B85","SI-----2G60 FS","SI-----2G60",35,35,35,35,8,8,8,8,8,,"HK1003 -Blackpoint D2 - Rev.0E DD30092021;Modules_from_ZIN107;Modules_from_ZIN107"
1.1.1-320,SI20UMY6M71,"(RFP) READY FOR PIPING PIPE BRIDGE 20UMY00Y/ULY00Y",5121,"HK1003-Rev.0E-3",TT_Mile,"57050",-,-,-,0,TK_NotStart,21/05/2022,,21/05/2022,,"SI20UMY6M10 FS,SI20UMY6M11 FS,SI20UMY6M12 FS,SI20UMY6M72 FS,SI20UMY6M75 FS,SI20UMY6M74 FS","SI20UMY6M10,SI20UMY6M11,SI20UMY6M12,SI20UMY6M72,SI20UMY6M75,SI20UMY6M74","SI20LCA6A46 FS,SI20MAG6A15 FS,SI20EKG6I15 FS,SI20EKG6H17 FS,SI20ULY7M16 FS,SI20UMY6B-15 FS","SI20LCA6A46,SI20MAG6A15,SI20EKG6I15,SI20EKG6H17,SI20ULY7M16,SI20UMY6B-15",94,,94,,21,,21,,66,144,"HK1003 -Blackpoint D2 - Rev.0E DD30092021;Modules_from_ZIN107;Modules_from_ZIN107"
1.1.1-321,SI20PAA2-50,"ERECTION MANUALS TO SITE BACK WASH STRAINER 20PAA11",5121,"HK1003-Rev.0E-3",TT_Mile,"57050",-,-,-,0,TK_NotStart,15/02/2022,,15/02/2022,,"SI20PAA2-40 FS","SI20PAA2-40","SI20PAA2-70 FS","SI20PAA2-70",80,,80,,18,,18,,50,2712,"HK1003 -Blackpoint D2 - Rev.0E DD30092021;Modules_from_ZIN107;Modules_from_ZIN107"
1.1.1-322,SI20PAA2-15,"DETAIL DESIGN BACK WASH STRAINER 20PAA11",5121,"HK1003-Rev.0E-3",TT_Task,"57050",-,-,-,100,TK_Complete,15/05/2021,15/05/2021,24/06/2021,24/06/2021,"SI20PAA2-20 FS","SI20PAA2-20","SI20PAA2-35 FS,SI20PAA2-30 FS,SI20PAA2-40 FS,SI20PAA2-25 FS","SI20PAA2-35,SI20PAA2-30,SI20PAA2-40,SI20PAA2-25",41,41,46,46,9,9,10,10,12,,"HK1003 -Blackpoint D2 - Rev.0E DD30092021;Modules_from_ZIN107;Modules_from_ZIN107"
1.1.1-323,SI20PAA2-5,"PREPARATION RFQ BACK WASH STRAINER 20PAA11",5121,"HK1003-Rev.0E-3",TT_Task,"57050",-,-,-,100,TK_Complete,15/01/2021,15/01/2021,28/02/2021,28/02/2021,"SI--PDB2B75 SS","SI--PDB2B75","SI20PAA2-10 FS","SI20PAA2-10",23,23,30,30,5,5,7,7,2,,"HK1003 -Blackpoint D2 - Rev.0E DD30092021;Modules_from_ZIN107;Modules_from_ZIN107"
1.1.1-324,SI20PAA2-60,"(RFS) READY FOR SHIPMENT BACK WASH STRAINER 20PAA11",5121,"HK1003-Rev.0E-3",TT_FinMile,"57050",-,-,-,0,TK_NotStart,17/01/2022,,17/01/2022,,"SI20PAA2-55 FS,SI20PAA2-40 FS","SI20PAA2-55,SI20PAA2-40","SI20PAA2-65 FS","SI20PAA2-65",76,,76,,17,,17,,46,2712,"HK1003 -Blackpoint D2 - Rev.0E DD30092021;Modules_from_ZIN107;Modules_from_ZIN107"
1.1.1-325,SI20PAA2-30,"(DF) INPUT FOR MS3 BACK WASH STRAINER 20PAA11",5121,"HK1003-Rev.0E-3",TT_FinMile,"57050",-,-,-,100,TK_Complete,15/06/2021,15/06/2021,15/06/2021,15/06/2021,"SI20PAA2-15 FS","SI20PAA2-15","SI20UQZ2-103 FS","SI20UQZ2-103",45,45,45,45,10,10,10,10,17,,"HK1003 -Blackpoint D2 - Rev.0E DD30092021;Modules_from_ZIN107;Modules_from_ZIN107"
1.1.1-326,SI20PAA2-35,"(DF) INPUT FOR M2 BACK WASH STRAINER 20PAA11",5121,"HK1003-Rev.0E-3",TT_FinMile,"57050",-,-,-,100,TK_Complete,15/06/2021,15/06/2021,15/06/2021,15/06/2021,"SI20PAA2-15 FS","SI20PAA2-15","SI---4P2A10 FS","SI---4P2A10",45,45,45,45,10,10,10,10,17,,"HK1003 -Blackpoint D2 - Rev.0E DD30092021;Modules_from_ZIN107;Modules_from_ZIN107"
1.1.1-327,SI20PAA2-70,"(OTD-OS) ARRIVAL ON SITE BACK WASH STRAINER 20PAA11",5121,"HK1003-Rev.0E-3",TT_FinMile,"57050",-,-,-,0,TK_NotStart,14/03/2022,,14/03/2022,,"SI20PAA2-65 FS,SI20PAA2-50 FS","SI20PAA2-65,SI20PAA2-50","SI20PAA2-75 FS","SI20PAA2-75",84,,84,,19,,19,,52,2712,"HK1003 -Blackpoint D2 - Rev.0E DD30092021;Modules_from_ZIN107;Modules_from_ZIN107"
1.1.1-328,SI20PAA2-65,"TRANSPORT TO SITEBACK WASH STRAINER 20PAA11",5121,"HK1003-Rev.0E-3",TT_Task,"57050",-,-,-,0,TK_NotStart,18/01/2022,,14/03/2022,,"SI20PAA2-60 FS","SI20PAA2-60","SI20PAA2-70 FS","SI20PAA2-70",76,,84,,17,,19,,46,2712,"HK1003 -Blackpoint D2 - Rev.0E DD30092021;Modules_from_ZIN107;Modules_from_ZIN107"
1.1.1-329,SI20PAA2-40,"MANUFACTURING / SHOP TEST / PACKING BACK WASH STRAINER 20PAA11",5121,"HK1003-Rev.0E-3",TT_Task,"57050",-,-,-,58,TK_Active,25/06/2021,25/06/2021,08/12/2021,,"SI20PAA2-15 FS,SI20PAA2-20 FS","SI20PAA2-15,SI20PAA2-20","SI20PAA2-45 FS,SI20PAA2-60 FS,SI20PAA2-50 FS","SI20PAA2-45,SI20PAA2-60,SI20PAA2-50",46,46,70,,10,10,16,,19,2808,"HK1003 -Blackpoint D2 - Rev.0E DD30092021;Modules_from_ZIN107;Modules_from_ZIN107"
1.1.1-330,SI20PAA2-20,"CONTRACT INTO FORCE BACK WASH STRAINER 20PAA11",5121,"HK1003-Rev.0E-3",TT_Mile,"57050",-,-,-,100,TK_Complete,15/05/2021,15/05/2021,15/05/2021,15/05/2021,"SI20PAA2-10 FS","SI20PAA2-10","SI20PAA2-15 FS,SI20PAA2-40 FS,SI20PAA2-25 FS","SI20PAA2-15,SI20PAA2-40,SI20PAA2-25",41,41,41,41,9,9,9,9,12,,"HK1003 -Blackpoint D2 - Rev.0E DD30092021;Modules_from_ZIN107;Modules_from_ZIN107"
1.1.1-331,SI20PAA2-10,"QUOTATION STAGE BACK WASH STRAINER 20PAA11",5121,"HK1003-Rev.0E-3",TT_Task,"57050",-,-,-,100,TK_Complete,01/03/2021,01/03/2021,14/05/2021,14/05/2021,"SI20PAA2-5 FS","SI20PAA2-5","SI20PAA2-20 FS","SI20PAA2-20",30,30,40,40,7,7,9,9,5,,"HK1003 -Blackpoint D2 - Rev.0E DD30092021;Modules_from_ZIN107;Modules_from_ZIN107"
1.1.1-332,SI20PAA2-25,"(DF) INPUT FOR VEL  BACK WASH STRAINER 20PAA11",5121,"HK1003-Rev.0E-3",TT_Mile,"57050",-,-,-,100,TK_Complete,24/06/2021,24/06/2021,24/06/2021,24/06/2021,"SI20PAA2-20 FS,SI20PAA2-15 FS","SI20PAA2-20,SI20PAA2-15","SP--B--2-61 FS","SP--B--2-61",46,46,46,46,10,10,10,10,19,,"HK1003 -Blackpoint D2 - Rev.0E DD30092021;Modules_from_ZIN107;Modules_from_ZIN107"
1.1.1-333,SI-P2I-16,"ERECTION MANUALS ON SITE -  INSULATION FOR ALL SYSTEMS",5121,"HK1003-Rev.0E-3",TT_Mile,"57050",-,-,-,0,TK_NotStart,28/04/2022,,28/04/2022,,"SI-P2I-6 SS","SI-P2I-6","SI-P2I-15 FS","SI-P2I-15",90,,90,,21,,21,,59,1888,"HK1003 -Blackpoint D2 - Rev.0E DD30092021;Modules_from_ZIN107;Modules_from_ZIN107"
1.1.1-334,SI-P2I-1,"PREPARE RFQ INSULATION FOR ALL SYSTEMS",5121,"HK1003-Rev.0E-3",TT_Task,"57050",-,-,-,71,TK_Active,31/08/2021,31/08/2021,11/10/2021,,"SI-----2E86 FS,SI---5P2A10 FS,SI---4P2A10 FS,SI---3P2A10 FS,SI---2P2A10 FS,SI---1P2H528 FS,SI---1P2H529 FS,SI---1P2A517 FS,SI---1P2H530 FS,SI---1P2A518 SS","SI-----2E86,SI---5P2A10,SI---4P2A10,SI---3P2A10,SI---2P2A10,SI---1P2H528,SI---1P2H529,SI---1P2A517,SI---1P2H530,SI---1P2A518","SI-P2I-4 FS","SI-P2I-4",56,56,62,,13,13,14,,27,1440,"HK1003 -Blackpoint D2 - Rev.0E DD30092021;Modules_from_ZIN107;Modules_from_ZIN107"
1.1.1-335,SI-P2I-13,"(RFS) READY FOR SHIPMENT INSULATION FOR ALL SYSTEMS",5121,"HK1003-Rev.0E-3",TT_FinMile,"57050",-,-,-,0,TK_NotStart,08/06/2022,,08/06/2022,,"SI-P2I-6 FS,SI-P2I-12 FS","SI-P2I-6,SI-P2I-12","SI-P2I-14 FS","SI-P2I-14",96,,96,,22,,22,,69,1440,"HK1003 -Blackpoint D2 - Rev.0E DD30092021;Modules_from_ZIN107;Modules_from_ZIN107"
1.1.1-336,SI-P2I-5,"CONTRACT INTO FORCE INSULATION FOR ALL SYSTEMS",5121,"HK1003-Rev.0E-3",TT_Mile,"57050",-,-,-,0,TK_NotStart,07/12/2021,,07/12/2021,,"SI-P2I-4 FS","SI-P2I-4","SI-P2I-6 FS","SI-P2I-6",70,,70,,16,,16,,41,1440,"HK1003 -Blackpoint D2 - Rev.0E DD30092021;Modules_from_ZIN107;Modules_from_ZIN107"
1.1.1-337,SI-P2I-4,"QUOTATION STAGE INSULATION FOR ALL SYSTEMS",5121,"HK1003-Rev.0E-3",TT_Task,"57050",-,-,-,0,TK_NotStart,12/10/2021,,06/12/2021,,"SI-P2I-1 FS","SI-P2I-1","SI-P2I-5 FS","SI-P2I-5",62,,70,,14,,16,,33,1440,"HK1003 -Blackpoint D2 - Rev.0E DD30092021;Modules_from_ZIN107;Modules_from_ZIN107"
1.1.1-338,SI-P2I-6,"MANUFACTURING / SHOP TEST INSULATION FOR ALL SYSTEMS",5121,"HK1003-Rev.0E-3",TT_Task,"57050",-,-,-,0,TK_NotStart,07/12/2021,,11/05/2022,,"SI-P2I-5 FS,SI--2222-30 FS","SI-P2I-5,SI--2222-30","SI-P2I-13 FS,SI-P2I-11 FS,SI-P2I-16 SS","SI-P2I-13,SI-P2I-11,SI-P2I-16",70,,92,,16,,21,,41,1440,"HK1003 -Blackpoint D2 - Rev.0E DD30092021;Modules_from_ZIN107;Modules_from_ZIN107"
1.1.1-339,SI-P2I-15,"(OTD-OS) ARRIIVAL ON SITE INSULATION FOR ALL SYSTEMS",5121,"HK1003-Rev.0E-3",TT_FinMile,"57050",-,-,-,0,TK_NotStart,03/08/2022,,03/08/2022,,"SI-P2I-14 FS,SI-P2I-16 FS","SI-P2I-14,SI-P2I-16","SI20LCA6A45 FS,SI20LAB6H45 FS,SI20MAG6A45 FS,SI20LBB6J49 FS,SI20LBA6J45 FS,SI20LBG6A47 FS,SI20LBA6J72 FS,SI20LBA6H45 FS,SI11LBA6H46 FS,SI20LBB6J47 FS,SI20LBG6A45 FS,SI20MBQ6H45 FS,SI20MAA6A45 FS,SI20MAL6A45 FS,SI20MAW6H45 FS,SI20LCL6A45 FS,SI20LCE6A45 FS,SI20PUS6A45 FS,SI20PB-6A45 FS,SI20PSB6A45 FS,SI20SCB6A45 FS,SI20QJA6A45 FS,SI20QJA6A47 FS,SI20MAM6A45 FS,SI20MAG6A47 FS,SI20HSJ6A45 FS,SI20MKA6A45 FS","SI20LCA6A45,SI20LAB6H45,SI20MAG6A45,SI20LBB6J49,SI20LBA6J45,SI20LBG6A47,SI20LBA6J72,SI20LBA6H45,SI11LBA6H46,SI20LBB6J47,SI20LBG6A45,SI20MBQ6H45,SI20MAA6A45,SI20MAL6A45,SI20MAW6H45,SI20LCL6A45,SI20LCE6A45,SI20PUS6A45,SI20PB-6A45,SI20PSB6A45,SI20SCB6A45,SI20QJA6A45,SI20QJA6A47,SI20MAM6A45,SI20MAG6A47,SI20HSJ6A45,SI20MKA6A45",104,,104,,24,,24,,76,1440,"HK1003 -Blackpoint D2 - Rev.0E DD30092021;Modules_from_ZIN107;Modules_from_ZIN107"
1.1.1-340,SI-P2I-14,"TRANSPORT TO SITE INSULATION FOR ALL SYSTEMS",5121,"HK1003-Rev.0E-3",TT_Task,"57050",-,-,-,0,TK_NotStart,09/06/2022,,03/08/2022,,"SI-P2I-13 FS","SI-P2I-13","SI-P2I-15 FS","SI-P2I-15",96,,104,,22,,24,,69,1440,"HK1003 -Blackpoint D2 - Rev.0E DD30092021;Modules_from_ZIN107;Modules_from_ZIN107"
1.1.1-341,SI20UMY6M72,"PLACING AND ALIGNMENT OF MODULE - ULY & UMY00K",5121,"HK1003-Rev.0E-3",TT_Task,"57050",-,-,-,0,TK_NotStart,19/05/2022,,20/05/2022,,"SI20UMY6M11 FS,SI20LBH6D16 FS,SI20UMY6M10 FS","SI20UMY6M11,SI20LBH6D16,SI20UMY6M10","SI20UMY6M71 FS,SI20ULY6M15 FF,SI20ULY6M15 SS,SI20LBH6D15 FS","SI20UMY6M71,SI20ULY6M15,SI20ULY6M15,SI20LBH6D15",93,,93,,21,,21,,65,144,"HK1003 -Blackpoint D2 - Rev.0E DD30092021;Modules_from_ZIN107;Modules_from_ZIN107"
1.1.1-342,SI20UMY6M74,"ERECTION TOWER UMY & STEEL STRUCTURE",5121,"HK1003-Rev.0E-3",TT_Task,"57050",-,-,-,0,TK_NotStart,26/04/2022,,30/04/2022,,"SI20UMY6M73 FS,SI20UMY4M40 FS,SI20UMY6M75 SS","SI20UMY6M73,SI20UMY4M40,SI20UMY6M75","SI20ULY6M15 FF,SI20ULY6M15 SS,SI20UMY6M71 FS","SI20ULY6M15,SI20ULY6M15,SI20UMY6M71",90,,91,,21,,21,,59,304,"HK1003 -Blackpoint D2 - Rev.0E DD30092021;Modules_from_ZIN107;Modules_from_ZIN107"
1.1.1-343,SI20UMY6M73,"PRE-ASSEMBLY TOWER UMY & STEEL STRUCTURE",5121,"HK1003-Rev.0E-3",TT_Task,"57050",-,-,-,0,TK_NotStart,21/04/2022,,25/04/2022,,"SI20UMY4M40 FS,SI20UMY6M77 FS","SI20UMY4M40,SI20UMY6M77","SI20UMY6M74 FS,SI20UMY6M76 FF,SI20UMY6M76 SS,SI20UMY6M06 FS","SI20UMY6M74,SI20UMY6M76,SI20UMY6M76,SI20UMY6M06",89,,90,,20,,21,,58,200,"HK1003 -Blackpoint D2 - Rev.0E DD30092021;Modules_from_ZIN107;Modules_from_ZIN107"
1.1.1-344,SI20---3M106,"ERECTION MANUALS ON SITE MODULE 20UPY00Y",5121,"HK1003-Rev.0E-3",TT_FinMile,"57050",-,-,-,0,TK_NotStart,22/07/2022,,22/07/2022,,"SI20---3M86 FS","SI20---3M86","SI20UPY6M10 FS","SI20UPY6M10",102,,102,,24,,24,,74,360,"HK1003 -Blackpoint D2 - Rev.0E DD30092021;Modules_from_ZIN107;Modules_from_ZIN107"
1.1.1-345,SI20---3M107,"ERECTION MANUALS ON SITE MODULE 20MAG50Y",5121,"HK1003-Rev.0E-3",TT_FinMile,"57050",-,-,-,0,TK_NotStart,14/04/2022,,14/04/2022,,"SI20MAG3M70 FS","SI20MAG3M70","SI20MAG6M10 FS","SI20MAG6M10",88,,88,,20,,20,,57,824,"HK1003 -Blackpoint D2 - Rev.0E DD30092021;Modules_from_ZIN107;Modules_from_ZIN107"
1.1.1-346,SI20---3M108,"ERECTION MANUALS ON SITE MODULE 20MAL00YC",5121,"HK1003-Rev.0E-3",TT_FinMile,"57050",-,-,-,0,TK_NotStart,08/04/2022,,08/04/2022,,"SI20MAL3M70 FS","SI20MAL3M70","SI20MAL6M10 FS","SI20MAL6M10",87,,87,,20,,20,,57,0,"HK1003 -Blackpoint D2 - Rev.0E DD30092021;Modules_from_ZIN107;Modules_from_ZIN107"
1.1.1-347,SI20---3M109,"ERECTION MANUALS ON SITE MODULE 20MAW10Y",5121,"HK1003-Rev.0E-3",TT_FinMile,"57050",-,-,-,0,TK_NotStart,11/04/2022,,11/04/2022,,"SI20MAW3M70 FS","SI20MAW3M70","SI20MAW6M10 FS","SI20MAW6M10",88,,88,,20,,20,,57,456,"HK1003 -Blackpoint D2 - Rev.0E DD30092021;Modules_from_ZIN107;Modules_from_ZIN107"
1.1.1-348,SI20---3M110,"ERECTION MANUALS ON SITE MODULE 20MAW50Y",5121,"HK1003-Rev.0E-3",TT_FinMile,"57050",-,-,-,0,TK_NotStart,14/04/2022,,14/04/2022,,"SI20MAW3M71 FS","SI20MAW3M71","SI20MAW6M11 FS","SI20MAW6M11",88,,88,,20,,20,,57,456,"HK1003 -Blackpoint D2 - Rev.0E DD30092021;Modules_from_ZIN107;Modules_from_ZIN107"
1.1.1-349,SI20---3M111,"ERECTION MANUALS ON SITE MODULE 20UMCM1Y",5121,"HK1003-Rev.0E-3",TT_FinMile,"57050",-,-,-,0,TK_NotStart,15/04/2022,,15/04/2022,,"SI20UMC3M70 FS","SI20UMC3M70","SI20UMC6M15 FS","SI20UMC6M15",88,,88,,20,,20,,58,184,"HK1003 -Blackpoint D2 - Rev.0E DD30092021;Modules_from_ZIN107;Modules_from_ZIN107"
1.1.1-350,SI20---3M112,"ERECTION MANUALS ON SITE MODULE 20UMCL1Y",5121,"HK1003-Rev.0E-3",TT_FinMile,"57050",-,-,-,0,TK_NotStart,08/04/2022,,08/04/2022,,"SI20UMC3M71 FS","SI20UMC3M71","SI20UMC6M16 FS,SI20UMC4M41 FS","SI20UMC6M16,SI20UMC4M41",87,,87,,20,,20,,57,1064,"HK1003 -Blackpoint D2 - Rev.0E DD30092021;Modules_from_ZIN107;Modules_from_ZIN107"
1.1.1-351,SI20LDK2B91,"ERECTION MANUALS ON SITE MODULE 20LDK00Y",5121,"HK1003-Rev.0E-3",TT_Mile,"57050",-,-,-,0,TK_NotStart,23/03/2022,,23/03/2022,,"SI20LDK3M70 FS","SI20LDK3M70","SI20LDK4M40 FS","SI20LDK4M40",85,,85,,19,,19,,53,144,"HK1003 -Blackpoint D2 - Rev.0E DD30092021;Modules_from_ZIN107;Modules_from_ZIN107"
1.1.1-352,SI20PGB2B92,"ERECTION MANUALS ON SITE MODULE 20PGB10Y",5121,"HK1003-Rev.0E-3",TT_Mile,"57050",-,-,-,0,TK_NotStart,05/05/2022,,05/05/2022,,"SI20PGB4M10 FS","SI20PGB4M10","SI20PGB4M40 FS","SI20PGB4M40",91,,91,,21,,21,,63,1104,"HK1003 -Blackpoint D2 - Rev.0E DD30092021;Modules_from_ZIN107;Modules_from_ZIN107"
1.1.1-353,SI20---3M113,"ERECTION MANUALS ON SITE MODULE 20PGB20Y",5121,"HK1003-Rev.0E-3",TT_FinMile,"57050",-,-,-,0,TK_NotStart,08/05/2022,,08/05/2022,,"SI20PGB3M71 FS","SI20PGB3M71","SI20PGB4M41 FS","SI20PGB4M41",92,,92,,21,,21,,63,1104,"HK1003 -Blackpoint D2 - Rev.0E DD30092021;Modules_from_ZIN107;Modules_from_ZIN107"
1.1.1-354,SI20---3M114,"ERECTION MANUALS ON SITE MODULE 20PCB10Y",5121,"HK1003-Rev.0E-3",TT_FinMile,"57050",-,-,-,0,TK_NotStart,06/05/2022,,06/05/2022,,"SI20PCB3M70 FS","SI20PCB3M70","SI20PCB4-40 FS","SI20PCB4-40",91,,91,,21,,21,,63,1104,"HK1003 -Blackpoint D2 - Rev.0E DD30092021;Modules_from_ZIN107;Modules_from_ZIN107"
1.1.1-355,SI20---3M115,"ERECTION MANUALS ON SITE MODULE 20LAC10Y",5121,"HK1003-Rev.0E-3",TT_FinMile,"57050",-,-,-,0,TK_NotStart,27/04/2022,,27/04/2022,,"SI20---3B92 FS","SI20---3B92","SI20LAC4M40 FS","SI20LAC4M40",90,,90,,21,,21,,59,240,"HK1003 -Blackpoint D2 - Rev.0E DD30092021;Modules_from_ZIN107;Modules_from_ZIN107"
1.1.1-356,SI20---3M116,"ERECTION MANUALS ON SITE MODULE 20LAC10Y",5121,"HK1003-Rev.0E-3",TT_FinMile,"57050",-,-,-,0,TK_NotStart,15/04/2022,,15/04/2022,,"SI20LCA3M71 FS","SI20LCA3M71","SI20LCA4M41 FS","SI20LCA4M41",88,,88,,20,,20,,58,144,"HK1003 -Blackpoint D2 - Rev.0E DD30092021;Modules_from_ZIN107;Modules_from_ZIN107"
1.1.1-357,SI20---3B93,"DELIVERY OF MAW/MAL VALVES (WELDING) FOR SHIPMENT LOT 1",5121,"HK1003-Rev.0E-3",TT_FinMile,"57050",-,-,-,0,TK_NotStart,31/12/2021,,31/12/2021,,"SI20MA-4-42 FS","SI20MA-4-42","SI20---3B37 FF","SI20---3B37",73,,73,,17,,17,,43,336,"HK1003 -Blackpoint D2 - Rev.0E DD30092021;Modules_from_ZIN107;Modules_from_ZIN107"
1.1.1-358,SI20UMY6M75,"PLACING AND ALIGNMENT OF MODULE UMY00-A11/A41/D11/D41 (inside UMC building)",5121,"HK1003-Rev.0E-3",TT_Task,"57050",-,-,-,0,TK_NotStart,25/04/2022,,15/05/2022,,"SI20UMY4M40 FS,SI20UMY6M77 FS,SI20SMM6-15 FS","SI20UMY4M40,SI20UMY6M77,SI20SMM6-15","SI20UMC5E75 FS,SI20UMC5E73 FS,SI20UMC6B-55 FS,SI20UMY6M74 SS,SI20UMY6M71 FS","SI20UMC5E75,SI20UMC5E73,SI20UMC6B-55,SI20UMY6M74,SI20UMY6M71",90,,93,,21,,21,,59,184,"HK1003 -Blackpoint D2 - Rev.0E DD30092021;Modules_from_ZIN107;Modules_from_ZIN107"
1.1.1-359,SI20-1P343,"PREFABRICATION OF OFFRACK PIPING FOR SHIPMENT LOT 4",5121,"HK1003-Rev.0E-3",TT_Task,"57050",-,-,-,15,TK_Active,08/09/2021,08/09/2021,02/02/2022,,"SI---1P2H528 FS,SI---1P2H530 FS,SI20-1P340 SS","SI---1P2H528,SI---1P2H530,SI20-1P340","SI20---3-70 FS","SI20---3-70",57,57,78,,13,13,18,,29,128,"HK1003 -Blackpoint D2 - Rev.0E DD30092021;Modules_from_ZIN107;Modules_from_ZIN107"
1.1.1-360,SI20---3B94,"PREFABRICATION OF OFFRACK PIPING FOR SHIPMENT LOT 5",5121,"HK1003-Rev.0E-3",TT_Task,"57050",-,-,-,0,TK_NotStart,08/10/2021,,03/03/2022,,"SI---1P2H538 FS,SI---1P2H536 FS,SI---1P2H528 FS,SI---1P2H530 FS,SI20---3B44 SS","SI---1P2H538,SI---1P2H536,SI---1P2H528,SI---1P2H530,SI20---3B44","SI20---3-71 FS,SI20---3B96 SS","SI20---3-71,SI20---3B96",61,,82,,14,,19,,32,208,"HK1003 -Blackpoint D2 - Rev.0E DD30092021;Modules_from_ZIN107;Modules_from_ZIN107"
1.1.1-361,SI20---3B95,"PREFABRICATION OF OFFRACK PIPING FOR SHIPMENT LOT 6",5121,"HK1003-Rev.0E-3",TT_Task,"57050",-,-,-,0,TK_NotStart,10/11/2021,,23/07/2022,,"SI---1P2H537 FS,SI---1P2A518 FS,SI20---3B51 SS","SI---1P2H537,SI---1P2A518,SI20---3B51","SI20---3-72 FS","SI20---3-72",66,,103,,15,,24,,37,1112,"HK1003 -Blackpoint D2 - Rev.0E DD30092021;Modules_from_ZIN107;Modules_from_ZIN107"
1.1.1-362,SI20BAA3B81,"(RFS) READY FOR SHIPMENT IPB FIRST PARTS / SADDLES 20BAA",5121,"HK1003-Rev.0E-3",TT_FinMile,"57050",-,-,-,0,TK_NotStart,27/06/2022,,27/06/2022,,"SI20BAA4-41 FS","SI20BAA4-41","SI20BAA4-42 FS","SI20BAA4-42",99,,99,,23,,23,,71,168,"HK1003 -Blackpoint D2 - Rev.0E DD30092021;Modules_from_ZIN107;Modules_from_ZIN107"
1.1.1-363,SI20---3M118,"(RFS) READY FOR SHIPMENT LOOSE STEEL FOR MODULES LOT 2 (20UMCL1Y/20UMCM1Y)",5121,"HK1003-Rev.0E-3",TT_FinMile,"57050",-,-,-,0,TK_NotStart,04/03/2022,,04/03/2022,,"SI20---4M28 FS","SI20---4M28","SI20---4M29 FS","SI20---4M29",82,,82,,19,,19,,52,240,"HK1003 -Blackpoint D2 - Rev.0E DD30092021;Modules_from_ZIN107;Modules_from_ZIN107"
1.1.1-364,SI20---4M29,"TRANSPORT LOOSE STEEL FOR MODULES LOT 2 (20UMCL1Y/20UMCM1Y)",5121,"HK1003-Rev.0E-3",TT_Task,"57050",-,-,-,0,TK_NotStart,05/03/2022,,08/04/2022,,"SI20---3M118 FS","SI20---3M118","SI20UMC4M42 FS,SI20UMC4M43 FS","SI20UMC4M42,SI20UMC4M43",83,,87,,19,,20,,52,240,"HK1003 -Blackpoint D2 - Rev.0E DD30092021;Modules_from_ZIN107;Modules_from_ZIN107"
1.1.1-365,SI20UMC4M42,"(OTD-OS) ON SITE LOOSE STEEL MODULE 20UMCM1Y",5121,"HK1003-Rev.0E-3",TT_FinMile,"57050",-,-,-,0,TK_NotStart,08/04/2022,,08/04/2022,,"SI20---4M29 FS","SI20---4M29","SI20UMC6M42 FS","SI20UMC6M42",87,,87,,20,,20,,57,240,"HK1003 -Blackpoint D2 - Rev.0E DD30092021;Modules_from_ZIN107;Modules_from_ZIN107"
1.1.1-366,SI20UMC6M42,"ERECTION LOOSE STEEL FOR MODULE 20UMCM1Y",5121,"HK1003-Rev.0E-3",TT_Task,"57050",-,-,-,0,TK_NotStart,09/04/2022,,06/05/2022,,"SI20UMC4M42 FS","SI20UMC4M42","SI20UMC6M15 FS","SI20UMC6M15",88,,91,,20,,21,,57,240,"HK1003 -Blackpoint D2 - Rev.0E DD30092021;Modules_from_ZIN107;Modules_from_ZIN107"
1.1.1-367,SI20UMC4M43,"(OTD-OS) ON SITE LOOSE STEEL MODULE 20UMCM1Y",5121,"HK1003-Rev.0E-3",TT_FinMile,"57050",-,-,-,0,TK_NotStart,08/04/2022,,08/04/2022,,"SI20---4M29 FS","SI20---4M29","SI20UMC6M43 FS","SI20UMC6M43",87,,87,,20,,20,,57,1064,"HK1003 -Blackpoint D2 - Rev.0E DD30092021;Modules_from_ZIN107;Modules_from_ZIN107"
1.1.1-368,SI20UMC6M43,"ERECTION LOOSE STEEL FOR MODULE 20UMCM1Y",5121,"HK1003-Rev.0E-3",TT_Task,"57050",-,-,-,0,TK_NotStart,09/04/2022,,06/05/2022,,"SI20UMC4M43 FS","SI20UMC4M43","SI20UMC6M16 FS","SI20UMC6M16",88,,91,,20,,21,,57,1064,"HK1003 -Blackpoint D2 - Rev.0E DD30092021;Modules_from_ZIN107;Modules_from_ZIN107"
1.1.1-369,SI20---3M120,"(RFS) READY FOR SHIPMENT LOOSE STEEL FOR MODULES LOT 1 (20UMY00Y/20ULY00Y)",5121,"HK1003-Rev.0E-3",TT_FinMile,"57050",-,-,-,0,TK_NotStart,02/02/2022,,02/02/2022,,"SI20---4M30 FS","SI20---4M30","SI20---4M31 FS","SI20---4M31",78,,78,,18,,18,,47,200,"HK1003 -Blackpoint D2 - Rev.0E DD30092021;Modules_from_ZIN107;Modules_from_ZIN107"
1.1.1-370,SI20---4M31,"TRANSPORT LOOSE STEEL FOR MODULES LOT 1 (20UMY00Y/20ULY00Y)",5121,"HK1003-Rev.0E-3",TT_Task,"57050",-,-,-,0,TK_NotStart,03/02/2022,,09/03/2022,,"SI20---3M120 FS","SI20---3M120","SI20UMY4M41 FS","SI20UMY4M41",78,,83,,18,,19,,48,200,"HK1003 -Blackpoint D2 - Rev.0E DD30092021;Modules_from_ZIN107;Modules_from_ZIN107"
1.1.1-371,SI20UMY4M41,"(OTD-OS) ON SITE LOOSE STEEL FOR MODULE 20UMY00Y/20ULY00Y",5121,"HK1003-Rev.0E-3",TT_FinMile,"57050",-,-,-,0,TK_NotStart,09/03/2022,,09/03/2022,,"SI20---4M31 FS","SI20---4M31","SI20UMY6M06 FS,SI20UMY6M08 FS,SI20UMY6M05 FS,SI20UMY6M07 FS,SI20UMY6M77 FS","SI20UMY6M06,SI20UMY6M08,SI20UMY6M05,SI20UMY6M07,SI20UMY6M77",83,,83,,19,,19,,52,200,"HK1003 -Blackpoint D2 - Rev.0E DD30092021;Modules_from_ZIN107;Modules_from_ZIN107"
1.1.1-372,SI20---3M122,"(RFS) READY FOR SHIPMENT LOOSE STEEL FOR MODULES LOT 3 (20UEY1Y/20UEY02Y)",5121,"HK1003-Rev.0E-3",TT_FinMile,"57050",-,-,-,0,TK_NotStart,04/04/2022,,04/04/2022,,"SI20---4M32 FS","SI20---4M32","SI20---4M33 FS","SI20---4M33",87,,87,,20,,20,,56,1160,"HK1003 -Blackpoint D2 - Rev.0E DD30092021;Modules_from_ZIN107;Modules_from_ZIN107"
1.1.1-373,SI20---4M33,"TRANSPORT LOOSE STEEL FOR MODULES LOT 3 (20UEY1Y/20UEY02Y)",5121,"HK1003-Rev.0E-3",TT_Task,"57050",-,-,-,0,TK_NotStart,05/04/2022,,09/05/2022,,"SI20---3M122 FS","SI20---3M122","SI20UEY4-131 FS,SI20UEY4-132 FS","SI20UEY4-131,SI20UEY4-132",87,,92,,20,,21,,56,1160,"HK1003 -Blackpoint D2 - Rev.0E DD30092021;Modules_from_ZIN107;Modules_from_ZIN107"
1.1.1-374,SI20UEY4-131,"(OTD-OS) ON SITE LOOSE STEEL FOR MODULE 20UEY01Y",5121,"HK1003-Rev.0E-3",TT_FinMile,"57050",-,-,-,0,TK_NotStart,09/05/2022,,09/05/2022,,"SI20---4M33 FS","SI20---4M33","SI20UEY6-5 FS,SI20UEY6-40 FS,SI20UEY6-30 FS,SI20UEY6-10 FS,SI20BZP7-172 FS,SI20BZP7-173 FS","SI20UEY6-5,SI20UEY6-40,SI20UEY6-30,SI20UEY6-10,SI20BZP7-172,SI20BZP7-173",92,,92,,21,,21,,64,1208,"HK1003 -Blackpoint D2 - Rev.0E DD30092021;Modules_from_ZIN107;Modules_from_ZIN107"
1.1.1-375,SI20UEY4-132,"(OTD-OS) ON SITE LOOSE STEEL FOR MODULE 20UEY02Y",5121,"HK1003-Rev.0E-3",TT_FinMile,"57050",-,-,-,0,TK_NotStart,09/05/2022,,09/05/2022,,"SI20---4M33 FS","SI20---4M33","SI20UEY6-25 FS,SI20UEY6-35 FS,SI20UEY6-20 FS,SI20BZP7-173 FS","SI20UEY6-25,SI20UEY6-35,SI20UEY6-20,SI20BZP7-173",92,,92,,21,,21,,64,1160,"HK1003 -Blackpoint D2 - Rev.0E DD30092021;Modules_from_ZIN107;Modules_from_ZIN107"
1.1.1-376,SI20UMY6M77,"PRE-ASSEMBLY UMY00Y-A11/A41/D11/D41 (inside UMC Building)",5121,"HK1003-Rev.0E-3",TT_Task,"57050",-,-,-,0,TK_NotStart,24/03/2022,,20/04/2022,,"SI20UMY4M41 FS","SI20UMY4M41","SI20UMY6M75 FS,SI20UMY6M73 FS","SI20UMY6M75,SI20UMY6M73",85,,89,,20,,20,,53,200,"HK1003 -Blackpoint D2 - Rev.0E DD30092021;Modules_from_ZIN107;Modules_from_ZIN107"
1.1.1-377,SI20UMC6B-5,"(OTD-OS) ON SITE PIPES CA01-UMC-WA05B (Gxx,LBA20/90,LBx,LCx,LDK,MAx,MBx,MKx,PAB,PAH,PCB,PGB,QC,QFB,SCB,SGx)",5121,"HK1003-Rev.0E-3",TT_FinMile,"57050",-,-,-,0,TK_NotStart,06/04/2022,,06/04/2022,,"SI20---4B25 FS","SI20---4B25","SI20UMC6B-10 FS","SI20UMC6B-10",87,,87,,20,,20,,56,128,"HK1003 -Blackpoint D2 - Rev.0E DD30092021;Modules_from_ZIN107;Modules_from_ZIN107"
1.1.1-378,SI20UMC6B-10,"WORK PREPARATION PIPING CA01-UMC-WA05B",5121,"HK1003-Rev.0E-3",TT_Task,"57050",-,-,-,0,TK_NotStart,07/04/2022,,20/04/2022,,"SI20UMC6B-5 FS,SI-P222-84 FS","SI20UMC6B-5,SI-P222-84","SI20UMC6B-15 FS,SI20UMC6B-50 SS,SI20UMC6A-25 SS","SI20UMC6B-15,SI20UMC6B-50,SI20UMC6A-25",87,,89,,20,,20,,56,128,"HK1003 -Blackpoint D2 - Rev.0E DD30092021;Modules_from_ZIN107;Modules_from_ZIN107"
1.1.1-379,SI20UMC6B-15,"ERECTION,NDT LB PIPES / VALVES CA01-UMC-WA05B (Gxx,LBA20/90,LBx,LCx,LDK,MAx,MBx,MKx,PAB,PAH,PCB,PGB,QC,QFB,SCB,SGx)",5121,"HK1003-Rev.0E-3",TT_Task,"57050",-,-,-,0,TK_NotStart,07/05/2022,,09/12/2022,,"SI20UMC6B-10 FS,SI20UPY6M10 FF,SI20MAW6M10 FF,SI20MAL6M10 SS,SI20MAW6M11 FF,SI20MAG6M10 FF,SI20LBG6C40 FF,SI20---4B26 FF,SI20UMC6M41 FF","SI20UMC6B-10,SI20UPY6M10,SI20MAW6M10,SI20MAL6M10,SI20MAW6M11,SI20MAG6M10,SI20LBG6C40,SI20---4B26,SI20UMC6M41","SI20UMC6B-20 FS,SI20UMC6A-30 SS","SI20UMC6B-20,SI20UMC6A-30",92,,122,,21,,28,,63,0,"HK1003 -Blackpoint D2 - Rev.0E DD30092021;Modules_from_ZIN107;Modules_from_ZIN107"
1.1.1-380,SI20UMC6B-20,"ERECTION,NDT SB PIPES / VALVES CA01-UMC-WA05B (Gxx,LBA20/90,LBx,LCx,LDK,MAx,MBx,MKx,PAB,PAH,PCB,PGB,QC,QFB,SCB,SGx)",5121,"HK1003-Rev.0E-3",TT_Task,"57050",-,-,-,0,TK_NotStart,26/11/2022,,17/03/2023,,"SI20UMC6B-15 FS,SI20---4B32 FS","SI20UMC6B-15,SI20---4B32","SI20UMY6M70 FS","SI20UMY6M70",121,,136,,28,,31,,86,0,"HK1003 -Blackpoint D2 - Rev.0E DD30092021;Modules_from_ZIN107;Modules_from_ZIN107"
1.1.1-381,SI20UMC6A-5,"(OTD-OS) ON SITE PIPES CA01-UMC-WA02A (LDK,MAG)",5121,"HK1003-Rev.0E-3",TT_FinMile,"57050",-,-,-,0,TK_NotStart,06/04/2022,,06/04/2022,,"SI20UMC6B-25 FS,SI20---4B25 FS","SI20UMC6B-25,SI20---4B25","SI20UMC6A-10 FS","SI20UMC6A-10",87,,87,,20,,20,,56,1416,"HK1003 -Blackpoint D2 - Rev.0E DD30092021;Modules_from_ZIN107;Modules_from_ZIN107"
1.1.1-382,SI20UMC6A-10,"WORK PREPARATION PIPING CA01-UMC-WA02A (LDK,MAG)",5121,"HK1003-Rev.0E-3",TT_Task,"57050",-,-,-,0,TK_NotStart,19/05/2022,,01/06/2022,,"SI20UMC6A-5 FS,SI-P222-84 FS,SI20UMC5E61 SS","SI20UMC6A-5,SI-P222-84,SI20UMC5E61","SI20UMC6A-15 FS,SI20UMC6B-30 FS","SI20UMC6A-15,SI20UMC6B-30",93,,95,,21,,22,,65,1080,"HK1003 -Blackpoint D2 - Rev.0E DD30092021;Modules_from_ZIN107;Modules_from_ZIN107"
1.1.1-383,SI20UMC6A-15,"ERECTION,NDT LB PIPES / VALVES CA01-UMC-WA02A (LDK,MAG)",5121,"HK1003-Rev.0E-3",TT_Task,"57050",-,-,-,0,TK_NotStart,02/06/2022,,31/08/2022,,"SI20UMC6A-10 FS,SI20LDK6M15 FS,SI20UMC5E48 FS,SI20---4B26 FF","SI20UMC6A-10,SI20LDK6M15,SI20UMC5E48,SI20---4B26","SI20UMC6A-20 FS","SI20UMC6A-20",95,,108,,22,,25,,68,1360,"HK1003 -Blackpoint D2 - Rev.0E DD30092021;Modules_from_ZIN107;Modules_from_ZIN107"
1.1.1-384,SI20UMC6A-20,"ERECTION,NDT SB PIPES / VALVES CA01-UMC-WA02A (LDK,MAG)",5121,"HK1003-Rev.0E-3",TT_Task,"57050",-,-,-,0,TK_NotStart,18/08/2022,,28/09/2022,,"SI20UMC6A-15 FS,SI20---4B32 FS","SI20UMC6A-15,SI20---4B32","SI20UMY6M70 FS","SI20UMY6M70",106,,112,,24,,26,,78,1360,"HK1003 -Blackpoint D2 - Rev.0E DD30092021;Modules_from_ZIN107;Modules_from_ZIN107"
1.1.1-385,SI20UMC6B-25,"(OTD-OS) ON SITE PIPES CA01-UMC-WA03B (Gxx,LBA90,LBx,LCA,LDK,LDT,MAJ,MAM,MAW,PCB,PGB,QC,QFB,SBM,SCB,SGA)",5121,"HK1003-Rev.0E-3",TT_FinMile,"57050",-,-,-,0,TK_NotStart,06/04/2022,,06/04/2022,,"SI20---4B25 FS","SI20---4B25","SI20UMC6B-30 FS,SI20UMC6A-5 FS","SI20UMC6B-30,SI20UMC6A-5",87,,87,,20,,20,,56,1416,"HK1003 -Blackpoint D2 - Rev.0E DD30092021;Modules_from_ZIN107;Modules_from_ZIN107"
1.1.1-386,SI20UMC6B-30,"WORK PREPARATION PIPING CA01-WA03B (Gxx,LBA90,LBx,LCA,LDK,LDT,MAJ,MAM,MAW,PCB,PGB,QC,QFB,SBM,SCB,SGA)",5121,"HK1003-Rev.0E-3",TT_Task,"57050",-,-,-,0,TK_NotStart,02/06/2022,,15/06/2022,,"SI20UMC6B-25 FS,SI-P222-84 FS,SI20UMC6A-10 FS","SI20UMC6B-25,SI-P222-84,SI20UMC6A-10","SI20UMC6B-35 FS","SI20UMC6B-35",95,,97,,22,,22,,68,1080,"HK1003 -Blackpoint D2 - Rev.0E DD30092021;Modules_from_ZIN107;Modules_from_ZIN107"
1.1.1-387,SI20UMC6B-35,"ERECTION,NDT LB PIPES / VALVES CA01-UMC-WA03B (Gxx,LBA90,LBx,LCA,LDK,LDT,MAJ,MAM,MAW,PCB,PGB,QC,QFB,SBM,SCB,SGA)",5121,"HK1003-Rev.0E-3",TT_Task,"57050",-,-,-,0,TK_NotStart,16/06/2022,,28/09/2022,,"SI20UMC6B-30 FS,SI20UMC6M16 FS,SI20PGB6M16 FS,SI20PGB6M15 FS,SI20PCB6M16 FS,SI20---4B26 FF","SI20UMC6B-30,SI20UMC6M16,SI20PGB6M16,SI20PGB6M15,SI20PCB6M16,SI20---4B26","SI20UMC6B-40 FS","SI20UMC6B-40",97,,112,,22,,26,,70,1080,"HK1003 -Blackpoint D2 - Rev.0E DD30092021;Modules_from_ZIN107;Modules_from_ZIN107"
1.1.1-388,SI20UMC6B-40,"ERECTION,NDT SB PIPES / VALVES CA01-UMC-WA03B (Gxx,LBA90,LBx,LCA,LDK,LDT,MAJ,MAM,MAW,PCB,PGB,QC,QFB,SBM,SCB,SGA)",5121,"HK1003-Rev.0E-3",TT_Task,"57050",-,-,-,0,TK_NotStart,15/09/2022,,02/11/2022,,"SI20UMC6B-35 FS,SI20---4B32 FS","SI20UMC6B-35,SI20---4B32","SI20UMY6M70 FS","SI20UMY6M70",110,,117,,25,,27,,81,1080,"HK1003 -Blackpoint D2 - Rev.0E DD30092021;Modules_from_ZIN107;Modules_from_ZIN107"
1.1.1-389,SI20UMC6B-45,"(OTD-OS) ON SITE PIPES CA01-UMC-WA04B (EGD,EKG70,Gxx,LBA90,LBx,LCA,LDK;MBA;MBH,PGB,QC,QFB,QU,SBM,SCB)",5121,"HK1003-Rev.0E-3",TT_FinMile,"57050",-,-,-,0,TK_NotStart,06/04/2022,,06/04/2022,,"SI20---4B25 FS","SI20---4B25","SI20UMC6B-50 FS","SI20UMC6B-50",87,,87,,20,,20,,56,1304,"HK1003 -Blackpoint D2 - Rev.0E DD30092021;Modules_from_ZIN107;Modules_from_ZIN107"
1.1.1-390,SI20UMC6B-50,"WORK PREPARATION PIPING CA01-WA04B (EGD,EKG70,Gxx,LBA90,LBx,LCA,LDK;MBA;MBH,PGB,QC,QFB,QU,SBM,SCB)",5121,"HK1003-Rev.0E-3",TT_Task,"57050",-,-,-,0,TK_NotStart,08/04/2022,,05/05/2022,,"SI20UMC6B-45 FS,SI-P222-84 FS,SI20UMC6B-10 SS","SI20UMC6B-45,SI-P222-84,SI20UMC6B-10","SI20UMC6B-55 FS","SI20UMC6B-55",87,,91,,20,,21,,57,1296,"HK1003 -Blackpoint D2 - Rev.0E DD30092021;Modules_from_ZIN107;Modules_from_ZIN107"
1.1.1-391,SI20UMC6B-55,"ERECTION,NDT LB PIPES / VALVES CA01-UMC-WA04B (EGD,EKG70,Gxx,LBA90,LBx,LCA,LDK;MBA;MBH,PGB,QC,QFB,QU,SBM,SCB)",5121,"HK1003-Rev.0E-3",TT_Task,"57050",-,-,-,0,TK_NotStart,16/05/2022,,04/09/2022,,"SI20UMC6B-50 FS,SI20UMY6M75 FS,SI20---4B26 FF","SI20UMC6B-50,SI20UMY6M75,SI20---4B26","SI20UMC6B-60 FS","SI20UMC6B-60",93,,109,,21,,25,,65,1216,"HK1003 -Blackpoint D2 - Rev.0E DD30092021;Modules_from_ZIN107;Modules_from_ZIN107"
1.1.1-392,SI20UMC6B-60,"ERECTION,NDT SB PIPES / VALVES CA01-UMC-WA04B (EGD,EKG70,Gxx,LBA90,LBx,LCA,LDK;MBA;MBH,PGB,QC,QFB,QU,SBM,SCB)",5121,"HK1003-Rev.0E-3",TT_Task,"57050",-,-,-,0,TK_NotStart,22/08/2022,,16/10/2022,,"SI20UMC6B-55 FS,SI20---4B32 FS","SI20UMC6B-55,SI20---4B32","SI20UMY6M70 FS","SI20UMY6M70",107,,115,,25,,26,,78,1216,"HK1003 -Blackpoint D2 - Rev.0E DD30092021;Modules_from_ZIN107;Modules_from_ZIN107"
1.1.1-393,SI20UMC6B-65,"(OTD-OS) ON SITE PIPES CA01-UMC-WA06B (MAV,MAX,MBA,MBH,MKx,PGB,QFB,QJA,SBM,SCB,SGA,SGC,SGE)",5121,"HK1003-Rev.0E-3",TT_FinMile,"57050",-,-,-,0,TK_NotStart,06/04/2022,,06/04/2022,,"SI20---4B25 FS","SI20---4B25","SI20UMC6B-70 FS","SI20UMC6B-70",87,,87,,20,,20,,56,1136,"HK1003 -Blackpoint D2 - Rev.0E DD30092021;Modules_from_ZIN107;Modules_from_ZIN107"
1.1.1-394,SI20UMC6B-70,"WORK PREPARATION PIPING CA01-WA06B (MAV,MAX,MBA,MBH,MKx,PGB,QFB,QJA,SBM,SCB,SGA,SGC,SGE)",5121,"HK1003-Rev.0E-3",TT_Task,"57050",-,-,-,0,TK_NotStart,07/05/2022,,20/05/2022,,"SI20UMC6B-65 FS,SI-P222-84 FS,SI20UMC5E47 SS","SI20UMC6B-65,SI-P222-84,SI20UMC5E47","SI20UMC6B-75 FS","SI20UMC6B-75",92,,93,,21,,21,,63,896,"HK1003 -Blackpoint D2 - Rev.0E DD30092021;Modules_from_ZIN107;Modules_from_ZIN107"
1.1.1-395,SI20UMC6B-75,"ERECTION,NDT LB PIPES / VALVES CA01-UMC-WA06B (MAV,MAX,MBA,MBH,MKx,PGB,QFB,QJA,SBM,SCB,SGA,SGC,SGE)",5121,"HK1003-Rev.0E-3",TT_Task,"57050",-,-,-,0,TK_NotStart,28/05/2022,,14/10/2022,,"SI20UMC6B-70 FS,SI20UMC6M15 FS,SI20---4B26 FF","SI20UMC6B-70,SI20UMC6M15,SI20---4B26","SI20UMC6B-80 FS","SI20UMC6B-80",95,,114,,22,,26,,67,840,"HK1003 -Blackpoint D2 - Rev.0E DD30092021;Modules_from_ZIN107;Modules_from_ZIN107"
1.1.1-396,SI20UMC6B-80,"ERECTION,NDT SB PIPES / VALVES CA01-UMC-WA06B (MAV,MAX,MBA,MBH,MKx,PGB,QFB,QJA,SBM,SCB,SGA,SGC,SGE)",5121,"HK1003-Rev.0E-3",TT_Task,"57050",-,-,-,0,TK_NotStart,01/10/2022,,02/12/2022,,"SI20UMC6B-75 FS","SI20UMC6B-75","SI20UMY6M70 FS","SI20UMY6M70",113,,121,,26,,28,,82,840,"HK1003 -Blackpoint D2 - Rev.0E DD30092021;Modules_from_ZIN107;Modules_from_ZIN107"
1.1.1-397,SI20UMY6B-5,"(OTD-OS) ON SITE PIPES CA02-UMY-WA00B (EGD,EKx,Gxx,HSJ,LAB,LBA90,LBx,LCA,LCL,MAV,MBA,PGB,QC,QFB,QJA,QU,SCB)",5121,"HK1003-Rev.0E-3",TT_FinMile,"57050",-,-,-,0,TK_NotStart,06/04/2022,,06/04/2022,,"SI20---4B25 FS","SI20---4B25","SI20UMY6B-10 FS","SI20UMY6B-10",87,,87,,20,,20,,56,192,"HK1003 -Blackpoint D2 - Rev.0E DD30092021;Modules_from_ZIN107;Modules_from_ZIN107"
1.1.1-398,SI20UMY6B-10,"WORK PREPARATION PIPING CA02-UMY-WA00B (EGD,EKx,Gxx,HSJ,LAB,LBA90,LBx,LCA,LCL,MAV,MBA,PGB,QC,QFB,QJA,QU,SCB)",5121,"HK1003-Rev.0E-3",TT_Task,"57050",-,-,-,0,TK_NotStart,17/04/2022,,14/05/2022,,"SI20UMY6B-5 FS,SI-P222-84 FS","SI20UMY6B-5,SI-P222-84","SI20UMY6B-15 FS,SI20UHA6B-10 SS","SI20UMY6B-15,SI20UHA6B-10",89,,93,,20,,21,,58,192,"HK1003 -Blackpoint D2 - Rev.0E DD30092021;Modules_from_ZIN107;Modules_from_ZIN107"
1.1.1-399,SI20UMY6B-15,"ERECTION,NDT LB PIPES / VALVES CA02-UMY-WA00B (EGD,EKx,Gxx,HSJ,LAB,LBA90,LBx,LCA,LCL,MAV,MBA,PGB,QC,QFB,QJA,QU,SCB)",5121,"HK1003-Rev.0E-3",TT_Task,"57050",-,-,-,0,TK_NotStart,21/05/2022,,18/11/2022,,"SI20UMY6B-10 FS,SI20LAC6M15 FF,SI20LCA6M16 FS,SI20UEY6-115 FF,SI20UMY6M71 FS,SI20---4B26 FF","SI20UMY6B-10,SI20LAC6M15,SI20LCA6M16,SI20UEY6-115,SI20UMY6M71,SI20---4B26","SI20UMY6B-20 FS","SI20UMY6B-20",94,,119,,21,,27,,66,144,"HK1003 -Blackpoint D2 - Rev.0E DD30092021;Modules_from_ZIN107;Modules_from_ZIN107"
1.1.1-400,SI20UMY6B-20,"ERECTION,NDT SB PIPES / VALVES CA02-UMY-WA00B (EGD,EKx,Gxx,HSJ,LAB,LBA90,LBx,LCA,LCL,MAV,MBA,PGB,QC,QFB,QJA,QU,SCB)",5121,"HK1003-Rev.0E-3",TT_Task,"57050",-,-,-,0,TK_NotStart,05/11/2022,,27/02/2023,,"SI20UMY6B-15 FS,SI20---4B32 FS","SI20UMY6B-15,SI20---4B32","SI20UMY6M70 FS","SI20UMY6M70",118,,134,,27,,31,,85,144,"HK1003 -Blackpoint D2 - Rev.0E DD30092021;Modules_from_ZIN107;Modules_from_ZIN107"
1.1.1-401,SI20UHW6A-5,"(OTD-OS) ON SITE PIPES CA02-UHW-WA00A (LCL)",5121,"HK1003-Rev.0E-3",TT_FinMile,"57050",-,-,-,0,TK_NotStart,06/04/2022,,06/04/2022,,"SI20---4B25 FS","SI20---4B25","SI20UHW6A-10 FS","SI20UHW6A-10",87,,87,,20,,20,,56,400,"HK1003 -Blackpoint D2 - Rev.0E DD30092021;Modules_from_ZIN107;Modules_from_ZIN107"
1.1.1-402,SI20UHW6A-10,"WORK PREPARATION PIPING CA02-UHW-WA00A (LCL)",5121,"HK1003-Rev.0E-3",TT_Task,"57050",-,-,-,0,TK_NotStart,07/04/2022,,20/04/2022,,"SI20UHW6A-5 FS,SI-P222-84 FS","SI20UHW6A-5,SI-P222-84","SI20UHW6A-15 FS","SI20UHW6A-15",87,,89,,20,,20,,56,400,"HK1003 -Blackpoint D2 - Rev.0E DD30092021;Modules_from_ZIN107;Modules_from_ZIN107"
1.1.1-403,SI20UHW6A-15,"ERECTION,NDT LB PIPES / VALVES CA02-UHW-WA00A (LCL)",5121,"HK1003-Rev.0E-3",TT_Task,"57050",-,-,-,0,TK_NotStart,21/04/2022,,19/10/2022,,"SI20UHW6A-10 FS,SI20LBH6D15 FF,SI20LCL6B15 FF,SI20---4B26 FF","SI20UHW6A-10,SI20LBH6D15,SI20LCL6B15,SI20---4B26","SI20UHW6A-20 FS,SI20LCL6A15 FS","SI20UHW6A-20,SI20LCL6A15",89,,115,,20,,26,,58,400,"HK1003 -Blackpoint D2 - Rev.0E DD30092021;Modules_from_ZIN107;Modules_from_ZIN107"
1.1.1-404,SI20UHW6A-20,"ERECTION,NDT SB PIPES / VALVES CA02-UHW-WA00A (LCL)",5121,"HK1003-Rev.0E-3",TT_Task,"57050",-,-,-,0,TK_NotStart,06/10/2022,,07/12/2022,,"SI20UHW6A-15 FS,SI20---4B32 FS","SI20UHW6A-15,SI20---4B32","SI20UMY6M70 FS","SI20UMY6M70",113,,122,,26,,28,,82,800,"HK1003 -Blackpoint D2 - Rev.0E DD30092021;Modules_from_ZIN107;Modules_from_ZIN107"
1.1.1-405,SI20UHA6-5,"(OTD-OS) ON SITE PIPES CA02 (EKG,EKT,GHC,GKB,PGB,QC,SCB)",5121,"HK1003-Rev.0E-3",TT_FinMile,"57050",-,-,-,0,TK_NotStart,06/04/2022,,06/04/2022,,"SI20---4B25 FS","SI20---4B25","SI20UHA6-10 FS","SI20UHA6-10",87,,87,,20,,20,,56,1976,"HK1003 -Blackpoint D2 - Rev.0E DD30092021;Modules_from_ZIN107;Modules_from_ZIN107"
1.1.1-406,SI20UHA6-10,"WORK PREPARATION PIPING CA02 (EKG,EKT,GHC,GKB,PGB,QC,SCB)",5121,"HK1003-Rev.0E-3",TT_Task,"57050",-,-,-,0,TK_NotStart,08/12/2022,,21/12/2022,,"SI20UHA6-5 FS,SI-P222-84 FS,SI20UMY6M15 FS,SI20UMY6M18 FS,SI20UMY6M16 FS,SI20UMY6M17 FS,SI20EK-4-25 SS","SI20UHA6-5,SI-P222-84,SI20UMY6M15,SI20UMY6M18,SI20UMY6M16,SI20UMY6M17,SI20EK-4-25","SI20UHA6-15 FS","SI20UHA6-15",122,,124,,28,,29,,86,16,"HK1003 -Blackpoint D2 - Rev.0E DD30092021;Modules_from_ZIN107;Modules_from_ZIN107"
1.1.1-407,SI20UHA6-15,"ERECTION,NDT LB PIPES / VALVES CA02 (EKG,EKT,GHC,GKB,PGB,QC,SCB)",5121,"HK1003-Rev.0E-3",TT_Task,"57050",-,-,-,0,TK_NotStart,22/12/2022,,15/02/2023,,"SI20UHA6-10 FS,SI20---4B26 FF,SI20EK-6-15 FF","SI20UHA6-10,SI20---4B26,SI20EK-6-15","SI20UHA6-20 FS","SI20UHA6-20",124,,132,,29,,30,,87,16,"HK1003 -Blackpoint D2 - Rev.0E DD30092021;Modules_from_ZIN107;Modules_from_ZIN107"
1.1.1-408,SI20UHA6-20,"ERECTION,NDT SB PIPES / VALVES CA02 (EKG,EKT,GHC,GKB,PGB,QC,SCB)",5121,"HK1003-Rev.0E-3",TT_Task,"57050",-,-,-,0,TK_NotStart,02/02/2023,,29/03/2023,,"SI20UHA6-15 FS,SI20---4B32 FS","SI20UHA6-15,SI20---4B32","SI20UMY6M70 FF","SI20UMY6M70",130,,138,,30,,32,,89,16,"HK1003 -Blackpoint D2 - Rev.0E DD30092021;Modules_from_ZIN107;Modules_from_ZIN107"
1.1.1-409,SI20UHA6B-5,"(OTD-OS) ON SITE PIPES CA02-UHA-WA00B (EKG,GHD,GKB,GM,HAD,HSJ,LAB,LBA90,LBH,LCA,SCB)",5121,"HK1003-Rev.0E-3",TT_FinMile,"57050",-,-,-,0,TK_NotStart,06/04/2022,,06/04/2022,,"SI20---4B25 FS","SI20---4B25","SI20UHA6B-10 FS","SI20UHA6B-10",87,,87,,20,,20,,56,1376,"HK1003 -Blackpoint D2 - Rev.0E DD30092021;Modules_from_ZIN107;Modules_from_ZIN107"
1.1.1-410,SI20UHA6B-10,"WORK PREPARATION PIPING CA02-UHA-WA00B (EKG,GHD,GKB,GM,HAD,HSJ,LAB,LBA90,LBH,LCA,SCB)",5121,"HK1003-Rev.0E-3",TT_Task,"57050",-,-,-,0,TK_NotStart,17/04/2022,,05/05/2022,,"SI20UHA6B-5 FS,SI-P222-84 FS,SI20UMY6B-10 SS","SI20UHA6B-5,SI-P222-84,SI20UMY6B-10","SI20UHA6B-15 FS","SI20UHA6B-15",89,,91,,20,,21,,58,1296,"HK1003 -Blackpoint D2 - Rev.0E DD30092021;Modules_from_ZIN107;Modules_from_ZIN107"
1.1.1-411,SI20UHA6B-15,"ERECTION,NDT LB PIPES / VALVES CA02-UHA-WA00B (EKG,GHD,GKB,GM,LAB,LBA90,LBH,LCA,SCB)",5121,"HK1003-Rev.0E-3",TT_Task,"57050",-,-,-,0,TK_NotStart,06/05/2022,,18/08/2022,,"SI20UHA6B-10 FS,SI20HA-6A48 FS,SI20---4B26 FF","SI20UHA6B-10,SI20HA-6A48,SI20---4B26","SI20UHA6B-20 FS","SI20UHA6B-20",91,,106,,21,,24,,63,1296,"HK1003 -Blackpoint D2 - Rev.0E DD30092021;Modules_from_ZIN107;Modules_from_ZIN107"
1.1.1-412,SI20UHA6B-20,"ERECTION,NDT SB PIPES / VALVES CA02-UHA-WA00B (EKG,GHD,GKB,GM,HAD,HSJ,LAB,LBA90,LBH,LCA,SCB)",5121,"HK1003-Rev.0E-3",TT_Task,"57050",-,-,-,0,TK_NotStart,05/08/2022,,06/10/2022,,"SI20UHA6B-15 FS,SI20---4B32 FS","SI20UHA6B-15,SI20---4B32","SI20UMY6M70 FS","SI20UMY6M70",104,,113,,24,,26,,76,1296,"HK1003 -Blackpoint D2 - Rev.0E DD30092021;Modules_from_ZIN107;Modules_from_ZIN107"
1.1.1-413,SI20URA6-5,"(OTD-OS) ON SITE PIPES CA03 (PAB,PAR,PSB)",5121,"HK1003-Rev.0E-3",TT_FinMile,"57050",-,-,-,0,TK_NotStart,05/05/2022,,05/05/2022,,"SI20---4B25 FS,SI20---4B26 FS","SI20---4B25,SI20---4B26","SI20URA6-10 FS","SI20URA6-10",91,,91,,21,,21,,63,1016,"HK1003 -Blackpoint D2 - Rev.0E DD30092021;Modules_from_ZIN107;Modules_from_ZIN107"
1.1.1-414,SI20URA6-10,"WORK PREPARATION PIPING CA03 (MAV, PAB,PAR,PSB,PUS)",5121,"HK1003-Rev.0E-3",TT_Task,"57050",-,-,-,0,TK_NotStart,24/07/2022,,06/08/2022,,"SI20URA6-5 FS,SI-P222-84 FS,SI20PAC6B40 FS","SI20URA6-5,SI-P222-84,SI20PAC6B40","SI20URA6-15 FS","SI20URA6-15",103,,105,,24,,24,,75,384,"HK1003 -Blackpoint D2 - Rev.0E DD30092021;Modules_from_ZIN107;Modules_from_ZIN107"
1.1.1-415,SI20URA6-15,"ERECTION,NDT LB PIPES / VALVES CA03 (MAV, PAB,PAR,PSB,PUS)",5121,"HK1003-Rev.0E-3",TT_Task,"57050",-,-,-,0,TK_NotStart,07/08/2022,,10/12/2022,,"SI20URA6-10 FS,SI20PAC6B40 FS","SI20URA6-10,SI20PAC6B40","SI20URA6-20 FS,SI20TPM24A6-20 SS","SI20URA6-20,SI20TPM24A6-20",105,,123,,24,,28,,77,384,"HK1003 -Blackpoint D2 - Rev.0E DD30092021;Modules_from_ZIN107;Modules_from_ZIN107"
1.1.1-416,SI20URA6-20,"ERECTION,NDT SB PIPES / VALVES CA03 (MAV, PAB,PAR,PSB,PUS)",5121,"HK1003-Rev.0E-3",TT_Task,"57050",-,-,-,0,TK_NotStart,27/11/2022,,28/01/2023,,"SI20URA6-15 FS,SI20---4B32 FS","SI20URA6-15,SI20---4B32","SI20UMY6M70 FS","SI20UMY6M70",121,,130,,28,,30,,86,384,"HK1003 -Blackpoint D2 - Rev.0E DD30092021;Modules_from_ZIN107;Modules_from_ZIN107"
1.1.1-417,SI20UEN65,"(OTD-OS) ON SITE PIPES CA04 (EGD,EKG,GHC,GHD,GKB,GM,HSJ,LCL,MAV,PSB,QFB,QJA,SCB)",5121,"HK1003-Rev.0E-3",TT_FinMile,"57050",-,-,-,0,TK_NotStart,05/05/2022,,05/05/2022,,"SI20---4B25 FS,SI20---4B26 FS","SI20---4B25,SI20---4B26","SI20UEN610 FS","SI20UEN610",91,,91,,21,,21,,63,864,"HK1003 -Blackpoint D2 - Rev.0E DD30092021;Modules_from_ZIN107;Modules_from_ZIN107"
1.1.1-418,SI20UEN610,"WORK PREPARATION PIPING CA04 (EGD,EKG,GHC,GHD,GKB,GM,HSJ,LCL,MAV,PSB,QFB,QJA,SCB)",5121,"HK1003-Rev.0E-3",TT_Task,"57050",-,-,-,0,TK_NotStart,18/05/2022,,31/05/2022,,"SI20UEN65 FS,SI-P222-84 FS","SI20UEN65,SI-P222-84","SI20UEN615 FS","SI20UEN615",93,,95,,21,,22,,65,864,"HK1003 -Blackpoint D2 - Rev.0E DD30092021;Modules_from_ZIN107;Modules_from_ZIN107"
1.1.1-419,SI20UEN615,"ERECTION,NDT LB PIPES / VALVES CA04 (EGD,EKG,GHC,GHD,GKB,GM,HSJ,LCL,MAV,PSB,QFB,QJA,SCB)",5121,"HK1003-Rev.0E-3",TT_Task,"57050",-,-,-,0,TK_NotStart,01/06/2022,,18/10/2022,,"SI20UEN610 FS,SI20EK-6-21 FF,SI20BZP7-174 FS,SI20BZP7-193 FS,SI20MBV6-40 FF,SI20MBV6-80 FF","SI20UEN610,SI20EK-6-21,SI20BZP7-174,SI20BZP7-193,SI20MBV6-40,SI20MBV6-80","SI20UEN620 FS,SI20UEZ6A-10 SS","SI20UEN620,SI20UEZ6A-10",95,,115,,22,,26,,67,864,"HK1003 -Blackpoint D2 - Rev.0E DD30092021;Modules_from_ZIN107;Modules_from_ZIN107"
1.1.1-420,SI20UEN620,"ERECTION,NDT SB PIPES / VALVES CA04 (EGD,EKG,GHC,GHD,GKB,GM,HSJ,LCL,MAV,PSB,QFB,QJA,SCB)",5121,"HK1003-Rev.0E-3",TT_Task,"57050",-,-,-,0,TK_NotStart,05/10/2022,,29/11/2022,,"SI20UEN615 FS,SI20---4B32 FS","SI20UEN615,SI20---4B32","SI20UMY6M70 FS","SI20UMY6M70",113,,121,,26,,28,,82,864,"HK1003 -Blackpoint D2 - Rev.0E DD30092021;Modules_from_ZIN107;Modules_from_ZIN107"
1.1.1-421,SI20UBF65,"(OTD-OS) ON SITE PIPES CA05 (EGD,GHD,GKB,LDT)",5121,"HK1003-Rev.0E-3",TT_FinMile,"57050",-,-,-,0,TK_NotStart,20/04/2022,,20/04/2022,,"SI20---4B25 FS","SI20---4B25","SI20UBF610 FS","SI20UBF610",89,,89,,20,,20,,58,688,"HK1003 -Blackpoint D2 - Rev.0E DD30092021;Modules_from_ZIN107;Modules_from_ZIN107"
1.1.1-422,SI20UBF610,"WORK PREPARATION PIPING CA05 (EGD,GHD,GKB,LDT)",5121,"HK1003-Rev.0E-3",TT_Task,"57050",-,-,-,0,TK_NotStart,21/04/2022,,04/05/2022,,"SI20UBF65 FS,SI-P222-84 FS","SI20UBF65,SI-P222-84","SI20UBF615 FS","SI20UBF615",89,,91,,20,,21,,58,688,"HK1003 -Blackpoint D2 - Rev.0E DD30092021;Modules_from_ZIN107;Modules_from_ZIN107"
1.1.1-423,SI20UBF615,"ERECTION,NDT LB PIPES / VALVES CA05 (EGD,GHD,GKB,LDT)",5121,"HK1003-Rev.0E-3",TT_Task,"57050",-,-,-,0,TK_NotStart,05/05/2022,,22/06/2022,,"SI20UBF610 FS,SI20---4B26 FF","SI20UBF610,SI20---4B26","SI20UBF620 FF,SI20TPM6B6-20 SS,SI20TPM5B6-20 SS,SI20TPC10A6-20 SS,SI20TPC9A6-20 SS,SI20TPC8A6-20 SS,SI20TPC5A6-20 SS","SI20UBF620,SI20TPM6B6-20,SI20TPM5B6-20,SI20TPC10A6-20,SI20TPC9A6-20,SI20TPC8A6-20,SI20TPC5A6-20",91,,98,,21,,23,,63,688,"HK1003 -Blackpoint D2 - Rev.0E DD30092021;Modules_from_ZIN107;Modules_from_ZIN107"
1.1.1-424,SI20UBF620,"ERECTION,NDT SB PIPES / VALVES CA05 (EGD,GHD,GKB,LDT)",5121,"HK1003-Rev.0E-3",TT_Task,"57050",-,-,-,0,TK_NotStart,02/06/2022,,22/06/2022,,"SI20UBF615 FF,SI20---4B32 FF","SI20UBF615,SI20---4B32","SI20UBA7-31 FS,SI20UBA7-28 FS,SI20UBA7-102 FS,SI20UBA7-34 FS,SI20UMY6M70 FS","SI20UBA7-31,SI20UBA7-28,SI20UBA7-102,SI20UBA7-34,SI20UMY6M70",95,,98,,22,,23,,68,688,"HK1003 -Blackpoint D2 - Rev.0E DD30092021;Modules_from_ZIN107;Modules_from_ZIN107"
1.1.1-425,SI20UMC6A-40,"(OTD-OS) ON SITE PIPES CA01-UMC-WA01A (GMM,LCA,LCE,LDK,MAG,MAW,SCB)",5121,"HK1003-Rev.0E-3",TT_FinMile,"57050",-,-,-,0,TK_NotStart,06/04/2022,,06/04/2022,,"SI20---4B25 FS","SI20---4B25","SI20UMC6A-25 FS","SI20UMC6A-25",87,,87,,20,,20,,56,1528,"HK1003 -Blackpoint D2 - Rev.0E DD30092021;Modules_from_ZIN107;Modules_from_ZIN107"
1.1.1-426,SI20UMC6A-25,"WORK PREPARATION PIPING CA01-UMC-WA01A (GMM,LCA,LCE,LDK,MAG,MAW,SCB)",5121,"HK1003-Rev.0E-3",TT_Task,"57050",-,-,-,0,TK_NotStart,07/04/2022,,20/04/2022,,"SI20UMC6A-40 FS,SI-P222-84 FS,SI20UMC6B-10 SS","SI20UMC6A-40,SI-P222-84,SI20UMC6B-10","SI20UMC6A-30 FS","SI20UMC6A-30",87,,89,,20,,20,,56,1528,"HK1003 -Blackpoint D2 - Rev.0E DD30092021;Modules_from_ZIN107;Modules_from_ZIN107"
1.1.1-427,SI20UMC6A-30,"ERECTION,NDT LB PIPES / VALVES CA01-UMC-WA01A (GMM,LCA,LCE,LDK,MAG,MAW,SCB)",5121,"HK1003-Rev.0E-3",TT_Task,"57050",-,-,-,0,TK_NotStart,13/05/2022,,01/09/2022,,"SI20UMC6A-25 FS,SI20MAW6M11 FF,SI20MAW6M10 FS,SI20UMC6B-15 SS,SI20---4B26 FF","SI20UMC6A-25,SI20MAW6M11,SI20MAW6M10,SI20UMC6B-15,SI20---4B26","SI20UMC6A-35 FS","SI20UMC6A-35",92,,108,,21,,25,,64,1352,"HK1003 -Blackpoint D2 - Rev.0E DD30092021;Modules_from_ZIN107;Modules_from_ZIN107"
1.1.1-428,SI20UMC6A-35,"ERECTION,NDT SB PIPES / VALVES CA01-UMC-WA01A (GMM,LCA,LCE,LDK,MAG,MAW,SCB)",5121,"HK1003-Rev.0E-3",TT_Task,"57050",-,-,-,0,TK_NotStart,19/08/2022,,29/09/2022,,"SI20UMC6A-30 FS,SI20---4B32 FS","SI20UMC6A-30,SI20---4B32","SI20UMY6M70 FS","SI20UMY6M70",106,,112,,24,,26,,78,1352,"HK1003 -Blackpoint D2 - Rev.0E DD30092021;Modules_from_ZIN107;Modules_from_ZIN107"
1.1.1-429,SI20UMC6-5,"(OTD-OS) ON SITE PIPES CA01 (GHD,GKB,LDT)",5121,"HK1003-Rev.0E-3",TT_FinMile,"57050",-,-,-,0,TK_NotStart,06/04/2022,,06/04/2022,,"SI20---4B25 FS","SI20---4B25","SI20UMC6-10 FS","SI20UMC6-10",87,,87,,20,,20,,56,1920,"HK1003 -Blackpoint D2 - Rev.0E DD30092021;Modules_from_ZIN107;Modules_from_ZIN107"
1.1.1-430,SI20UMC6-10,"WORK PREPARATION PIPING CA01 (GHD,GKB,LDT)",5121,"HK1003-Rev.0E-3",TT_Task,"57050",-,-,-,0,TK_NotStart,07/04/2022,,20/04/2022,,"SI20UMC6-5 FS,SI-P222-84 FS","SI20UMC6-5,SI-P222-84","SI20UMC6-15 FS","SI20UMC6-15",87,,89,,20,,20,,56,1920,"HK1003 -Blackpoint D2 - Rev.0E DD30092021;Modules_from_ZIN107;Modules_from_ZIN107"
1.1.1-431,SI20UMC6-15,"ERECTION,NDT LB PIPES / VALVES CA01 (GHD,GKB,LDT)",5121,"HK1003-Rev.0E-3",TT_Task,"57050",-,-,-,0,TK_NotStart,21/04/2022,,22/06/2022,,"SI20UMC6-10 FS,SI20UMC5E70 FS,SI20UMC5E58 FS,SI20UMC5E52 FS,SI20---4B26 FF","SI20UMC6-10,SI20UMC5E70,SI20UMC5E58,SI20UMC5E52,SI20---4B26","SI20UMC6-20 FS","SI20UMC6-20",89,,98,,20,,23,,59,1920,"HK1003 -Blackpoint D2 - Rev.0E DD30092021;Modules_from_ZIN107;Modules_from_ZIN107"
1.1.1-432,SI20UMC6-20,"ERECTION,NDT SB PIPES / VALVES CA01 (GHD,GKB,LDT)",5121,"HK1003-Rev.0E-3",TT_Task,"57050",-,-,-,0,TK_NotStart,09/06/2022,,20/07/2022,,"SI20UMC6-15 FS,SI20---4B32 FS","SI20UMC6-15,SI20---4B32","SI20UMY6M70 FS","SI20UMY6M70",96,,102,,22,,23,,69,1920,"HK1003 -Blackpoint D2 - Rev.0E DD30092021;Modules_from_ZIN107;Modules_from_ZIN107"
1.1.1-433,SI20UEZ6A-20,"(OTD-OS) ON SITE PIPES CA06-UEZ-WA00A (EGD,EKG,GHC,GHD,GKB,MAV,QFB,QJA,SCB)",5121,"HK1003-Rev.0E-3",TT_FinMile,"57050",-,-,-,0,TK_NotStart,06/04/2022,,06/04/2022,,"SI20---4B25 FS","SI20---4B25","SI20UEZ6A-5 FS","SI20UEZ6A-5",87,,87,,20,,20,,56,1472,"HK1003 -Blackpoint D2 - Rev.0E DD30092021;Modules_from_ZIN107;Modules_from_ZIN107"
1.1.1-434,SI20UEZ6A-5,"WORK PREPARATION PIPING CA06-UEZ-WA00A (EGD,EKG,GHC,GHD,GKB,MAV,QFB,QJA,SCB)",5121,"HK1003-Rev.0E-3",TT_Task,"57050",-,-,-,0,TK_NotStart,18/05/2022,,31/05/2022,,"SI20UEZ6A-20 FS,SI-P222-84 FS,SI20UEZ6B-10 SS","SI20UEZ6A-20,SI-P222-84,SI20UEZ6B-10","SI20UEZ6A-10 FS","SI20UEZ6A-10",93,,95,,21,,22,,65,1144,"HK1003 -Blackpoint D2 - Rev.0E DD30092021;Modules_from_ZIN107;Modules_from_ZIN107"
1.1.1-435,SI20UEZ6A-10,"ERECTION,NDT LB PIPES / VALVES CA06-UEZ-WA00A (EGD,EKG,GHC,GHD,GKB,MAV,QFB,QJA,SCB)",5121,"HK1003-Rev.0E-3",TT_Task,"57050",-,-,-,0,TK_NotStart,01/06/2022,,13/09/2022,,"SI20UEZ6A-5 FS,SI20UEN615 SS,SI20---4B26 FF","SI20UEZ6A-5,SI20UEN615,SI20---4B26","SI20UEZ6A-15 FS","SI20UEZ6A-15",95,,110,,22,,25,,67,1144,"HK1003 -Blackpoint D2 - Rev.0E DD30092021;Modules_from_ZIN107;Modules_from_ZIN107"
1.1.1-436,SI20UEZ6A-15,"ERECTION,NDT SB PIPES / VALVES CA06-UEZ-WA00A (EGD,EKG,GHC,GHD,GKB,MAV,QFB,QJA,SCB)",5121,"HK1003-Rev.0E-3",TT_Task,"57050",-,-,-,0,TK_NotStart,31/08/2022,,25/10/2022,,"SI20UEZ6A-10 FS,SI20---4B32 FS","SI20UEZ6A-10,SI20---4B32","SI20UMY6M70 FS","SI20UMY6M70",108,,116,,25,,27,,80,1144,"HK1003 -Blackpoint D2 - Rev.0E DD30092021;Modules_from_ZIN107;Modules_from_ZIN107"
1.1.1-437,SI20UEZ6B-20,"(OTD-OS) ON SITE PIPES CA06-UEZ-WA00B (EGD,EKG,GHC,GHD,GKB,QFB,QJA,SCB)",5121,"HK1003-Rev.0E-3",TT_FinMile,"57050",-,-,-,0,TK_NotStart,06/04/2022,,06/04/2022,,"SI20---4B25 FS","SI20---4B25","SI20UEZ6B-5 FS","SI20UEZ6B-5",87,,87,,20,,20,,56,912,"HK1003 -Blackpoint D2 - Rev.0E DD30092021;Modules_from_ZIN107;Modules_from_ZIN107"
1.1.1-438,SI20UEZ6B-5,"WORK PREPARATION PIPING CA06-UEZ-WA00B (EGD,EKG,GHC,GHD,GKB,QFB,QJA,SCB)",5121,"HK1003-Rev.0E-3",TT_Task,"57050",-,-,-,0,TK_NotStart,04/05/2022,,17/05/2022,,"SI20UEZ6B-20 FS,SI-P222-84 FS,SI20SD-110& SS","SI20UEZ6B-20,SI-P222-84,SI20SD-110&","SI20UEZ6B-10 FS","SI20UEZ6B-10",91,,93,,21,,21,,62,696,"HK1003 -Blackpoint D2 - Rev.0E DD30092021;Modules_from_ZIN107;Modules_from_ZIN107"
1.1.1-439,SI20UEZ6B-10,"ERECTION,NDT LB PIPES / VALVES CA06-UEZ-WA00B (EGD,EKG,GHC,GHD,GKB,QFB,QJA,SCB)",5121,"HK1003-Rev.0E-3",TT_Task,"57050",-,-,-,0,TK_NotStart,18/05/2022,,04/10/2022,,"SI20UEZ6B-5 FS,SI20SD-110& SS,SI20UEY5-45 FS,SI20---4B26 FF","SI20UEZ6B-5,SI20SD-110&,SI20UEY5-45,SI20---4B26","SI20UEZ6B-15 FS,SI20TPM9B6-20 SS,SI20TPM9A6-20 SS,SI20TPM6A6-20 SS,SI20TPM5A6-20 SS,SI20TPM17A6-20 SS,SI20TPM18A6-20 SS,SI20TPM2C6-20 SS,SI20TPM4A6-20 SS,SI20TPM7A6-20 SS,SI20TPM7B6-20 SS,SI20TPM8A6-20 SS,SI20TPM1A6-20 SS,SI20TPM1B6-20 SS,SI20UEZ6A-5 SS","SI20UEZ6B-15,SI20TPM9B6-20,SI20TPM9A6-20,SI20TPM6A6-20,SI20TPM5A6-20,SI20TPM17A6-20,SI20TPM18A6-20,SI20TPM2C6-20,SI20TPM4A6-20,SI20TPM7A6-20,SI20TPM7B6-20,SI20TPM8A6-20,SI20TPM1A6-20,SI20TPM1B6-20,SI20UEZ6A-5",93,,113,,21,,26,,65,696,"HK1003 -Blackpoint D2 - Rev.0E DD30092021;Modules_from_ZIN107;Modules_from_ZIN107"
1.1.1-440,SI20UEZ6B-15,"ERECTION,NDT SB PIPES / VALVES CA06-UEZ-WA00B (EGD,EKG,GHC,GHD,GKB,QFB,QJA,SCB)",5121,"HK1003-Rev.0E-3",TT_Task,"57050",-,-,-,0,TK_NotStart,05/10/2022,,20/12/2022,,"SI20UEZ6B-10 FS,SI20---4B32 FS","SI20UEZ6B-10,SI20---4B32","SI20UMY6M70 FS","SI20UMY6M70",113,,124,,26,,29,,82,696,"HK1003 -Blackpoint D2 - Rev.0E DD30092021;Modules_from_ZIN107;Modules_from_ZIN107"
1.1.1-441,SI20UVM6B15,"(OTD-OS) ON SITE PIPES CA07-UVM-WA00B (HSJ,PSB)",5121,"HK1003-Rev.0E-3",TT_FinMile,"57050",-,-,-,0,TK_NotStart,05/05/2022,,05/05/2022,,"SI20---4B25 FS,SI20---4B26 FS","SI20---4B25,SI20---4B26","SI20UVM6B20 FS","SI20UVM6B20",91,,91,,21,,21,,63,1184,"HK1003 -Blackpoint D2 - Rev.0E DD30092021;Modules_from_ZIN107;Modules_from_ZIN107"
1.1.1-442,SI20UVM6B20,"WORK PREPARATION PIPING CA07-UVM-WA00B (HSJ,PSB)",5121,"HK1003-Rev.0E-3",TT_Task,"57050",-,-,-,0,TK_NotStart,17/06/2022,,30/06/2022,,"SI20UVM6B15 FS,SI-P222-84 FS,SI20UVM5-45 FS","SI20UVM6B15,SI-P222-84,SI20UVM5-45","SI20UVM6B5 FS","SI20UVM6B5",97,,99,,22,,23,,70,848,"HK1003 -Blackpoint D2 - Rev.0E DD30092021;Modules_from_ZIN107;Modules_from_ZIN107"
1.1.1-443,SI20UVM6B5,"ERECTION,NDT LB PIPES / VALVES CA07-UVM-WA00B (HSJ,PSB)",5121,"HK1003-Rev.0E-3",TT_Task,"57050",-,-,-,0,TK_NotStart,01/07/2022,,20/10/2022,,"SI20UVM6B20 FS,SI20SD-110& SS,SI20UBY5-56 FS,SI20UBY4-56 FS","SI20UVM6B20,SI20SD-110&,SI20UBY5-56,SI20UBY4-56","SI20UVM6B10 FS,SI20TPM14B6-20 SS,SI20TPM14A6-20 SS,SI20TPM13B6-20 SS,SI20TPM13A6-20 SS","SI20UVM6B10,SI20TPM14B6-20,SI20TPM14A6-20,SI20TPM13B6-20,SI20TPM13A6-20",99,,115,,23,,27,,72,848,"HK1003 -Blackpoint D2 - Rev.0E DD30092021;Modules_from_ZIN107;Modules_from_ZIN107"
1.1.1-444,SI20UVM6B10,"ERECTION,NDT SB PIPES / VALVES CA07-UVM-WA00B (HSJ,PSB)",5121,"HK1003-Rev.0E-3",TT_Task,"57050",-,-,-,0,TK_NotStart,07/10/2022,,01/12/2022,,"SI20UVM6B5 FS,SI20---4B32 FS","SI20UVM6B5,SI20---4B32","SI20UMY6M70 FS","SI20UMY6M70",113,,121,,26,,28,,83,848,"HK1003 -Blackpoint D2 - Rev.0E DD30092021;Modules_from_ZIN107;Modules_from_ZIN107"
1.1.1-445,SI20UMY6B10,"(OTD-OS) ON SITE PIPES CA07-UMY-WA00B",5121,"HK1003-Rev.0E-3",TT_FinMile,"57050",-,-,-,0,TK_NotStart,06/04/2022,,06/04/2022,,"SI20---4B25 FS","SI20---4B25","SI20UMY6B15 FS","SI20UMY6B15",87,,87,,20,,20,,56,1864,"HK1003 -Blackpoint D2 - Rev.0E DD30092021;Modules_from_ZIN107;Modules_from_ZIN107"
1.1.1-446,SI20UMY6B15,"WORK PREPARATION PIPING CA07-UMY-WA00B",5121,"HK1003-Rev.0E-3",TT_Task,"57050",-,-,-,0,TK_NotStart,07/04/2022,,20/04/2022,,"SI20UMY6B10 FS,SI-P222-84 FS","SI20UMY6B10,SI-P222-84","SI20UMY6B20 FS","SI20UMY6B20",87,,89,,20,,20,,56,1864,"HK1003 -Blackpoint D2 - Rev.0E DD30092021;Modules_from_ZIN107;Modules_from_ZIN107"
1.1.1-447,SI20UMY6B20,"ERECTION,NDT LB PIPES / VALVES CA07-UMY-WA00B",5121,"HK1003-Rev.0E-3",TT_Task,"57050",-,-,-,0,TK_NotStart,04/05/2022,,12/07/2022,,"SI20UMY6B15 FS,SI20SD-110& SS,SI20---4B26 FF","SI20UMY6B15,SI20SD-110&,SI20---4B26","SI20UMY6B5 FS","SI20UMY6B5",91,,101,,21,,23,,62,1760,"HK1003 -Blackpoint D2 - Rev.0E DD30092021;Modules_from_ZIN107;Modules_from_ZIN107"
1.1.1-448,SI20UMY6B5,"ERECTION,NDT SB PIPES / VALVES CA07-UMY-WA00B",5121,"HK1003-Rev.0E-3",TT_Task,"57050",-,-,-,0,TK_NotStart,29/06/2022,,09/08/2022,,"SI20UMY6B20 FS,SI20---4B32 FS","SI20UMY6B20,SI20---4B32","SI20UMY6M70 FS","SI20UMY6M70",99,,105,,23,,24,,71,1760,"HK1003 -Blackpoint D2 - Rev.0E DD30092021;Modules_from_ZIN107;Modules_from_ZIN107"
1.1.1-449,SI20ULD6B5,"(OTD-OS) ON SITE PIPES CA07-ULD-WA00B (LDN,LDT)",5121,"HK1003-Rev.0E-3",TT_FinMile,"57050",-,-,-,0,TK_NotStart,06/04/2022,,06/04/2022,,"SI20---4B25 FS","SI20---4B25","SI20ULD6B10 FS","SI20ULD6B10",87,,87,,20,,20,,56,1864,"HK1003 -Blackpoint D2 - Rev.0E DD30092021;Modules_from_ZIN107;Modules_from_ZIN107"
1.1.1-450,SI20ULD6B10,"WORK PREPARATION PIPING CA07-ULD-WA00B (LDN,LDT)",5121,"HK1003-Rev.0E-3",TT_Task,"57050",-,-,-,0,TK_NotStart,07/04/2022,,20/04/2022,,"SI20ULD6B5 FS,SI-P222-84 FS","SI20ULD6B5,SI-P222-84","SI20ULD6B15 FS","SI20ULD6B15",87,,89,,20,,20,,56,1864,"HK1003 -Blackpoint D2 - Rev.0E DD30092021;Modules_from_ZIN107;Modules_from_ZIN107"
1.1.1-451,SI20ULD6B15,"ERECTION,NDT LB PIPES / VALVES CA07-ULD-WA00B (LDN,LDT)",5121,"HK1003-Rev.0E-3",TT_Task,"57050",-,-,-,0,TK_NotStart,04/05/2022,,12/07/2022,,"SI20ULD6B10 FS,CLP20ULZ5-82 FS,SI20SD-110& SS,CLP20ULZ5-80 FS,SI20---4B26 FF","SI20ULD6B10,CLP20ULZ5-82,SI20SD-110&,CLP20ULZ5-80,SI20---4B26","SI20ULD6B20 FS,SI20TPM28A6-20 SS","SI20ULD6B20,SI20TPM28A6-20",91,,101,,21,,23,,62,1760,"HK1003 -Blackpoint D2 - Rev.0E DD30092021;Modules_from_ZIN107;Modules_from_ZIN107"
1.1.1-452,SI20ULD6B20,"ERECTION,NDT SB PIPES / CA07-ULD-WA00B (LDN,LDT)",5121,"HK1003-Rev.0E-3",TT_Task,"57050",-,-,-,0,TK_NotStart,29/06/2022,,09/08/2022,,"SI20ULD6B15 FS,SI20---4B32 FS","SI20ULD6B15,SI20---4B32","SI20UMY6M70 FS","SI20UMY6M70",99,,105,,23,,24,,71,1760,"HK1003 -Blackpoint D2 - Rev.0E DD30092021;Modules_from_ZIN107;Modules_from_ZIN107"
1.1.1-453,SI20UZ6A20,"(OTD-OS) ON SITE PIPES CA01-UZ-WA00A (PAB)",5121,"HK1003-Rev.0E-3",TT_FinMile,"57050",-,-,-,100,TK_Complete,07/07/2021,07/07/2021,07/07/2021,07/07/2021,"SI20PAB5-70 FS","SI20PAB5-70","SI20UZ6A5 FS","SI20UZ6A5",48,48,48,48,11,11,11,11,21,,"HK1003 -Blackpoint D2 - Rev.0E DD30092021;Modules_from_ZIN107;Modules_from_ZIN107"
1.1.1-454,SI20UZ6A5,"WORK PREPARATION PIPING CA01-UZ-WA00A (PAB)",5121,"HK1003-Rev.0E-3",TT_Task,"57050",-,-,-,100,TK_Complete,08/07/2021,08/07/2021,21/07/2021,21/07/2021,"SI20UZ6A20 FS,SI-P222-84 FS","SI20UZ6A20,SI-P222-84","SI20UZ6A10 SS","SI20UZ6A10",48,48,50,50,11,11,11,11,21,,"HK1003 -Blackpoint D2 - Rev.0E DD30092021;Modules_from_ZIN107;Modules_from_ZIN107"
1.1.1-455,SI20UZ6A10,"ERECTION,NDT LB PIPES / VALVES CA01-UZ-WA00A (PAB)",5121,"HK1003-Rev.0E-3",TT_Task,"57050",-,-,-,70,TK_Active,02/08/2021,02/08/2021,24/10/2021,,"SI20UZ6A5 SS,SI20PAB5-60 SS","SI20UZ6A5,SI20PAB5-60","SI20UZ6A15 FF","SI20UZ6A15",52,52,64,,12,12,14,,24,1176,"HK1003 -Blackpoint D2 - Rev.0E DD30092021;Modules_from_ZIN107;Modules_from_ZIN107"
1.1.1-456,SI20UZ6A15,"ERECTION,NDT SB PIPES / VALVES CA01-UZ-WA00A (PAB)",5121,"HK1003-Rev.0E-3",TT_Task,"57050",-,-,-,0,TK_NotStart,04/10/2021,,24/10/2021,,"SI20UZ6A10 FF","SI20UZ6A10","SI20PAB5-100 FS","SI20PAB5-100",61,,64,,14,,14,,31,1176,"HK1003 -Blackpoint D2 - Rev.0E DD30092021;Modules_from_ZIN107;Modules_from_ZIN107"
1.1.1-457,SI20UZ6A25,"(OTD-OS) ON SITE PIPES CA02-UZ-WA00A (PAB)",5121,"HK1003-Rev.0E-3",TT_FinMile,"57050",-,-,-,100,TK_Complete,21/08/2021,21/08/2021,21/08/2021,21/08/2021,"SI20PAB5-116 FS","SI20PAB5-116","SI20UZ6A30 FS","SI20UZ6A30",55,55,55,55,12,12,12,12,27,,"HK1003 -Blackpoint D2 - Rev.0E DD30092021;Modules_from_ZIN107;Modules_from_ZIN107"
1.1.1-458,SI20UZ6A30,"WORK PREPARATION PIPING CA02-UZ-WA00A (PAB)",5121,"HK1003-Rev.0E-3",TT_Task,"57050",-,-,-,61,TK_Active,22/08/2021,22/08/2021,24/10/2021,,"SI20UZ6A25 FS,SI-P222-84 FS","SI20UZ6A25,SI-P222-84","SI20UZ6A35 FF","SI20UZ6A35",55,55,64,,12,12,14,,27,1136,"HK1003 -Blackpoint D2 - Rev.0E DD30092021;Modules_from_ZIN107;Modules_from_ZIN107"
1.1.1-459,SI20UZ6A35,"ERECTION,NDT LB PIPES / VALVES CA02-UZ-WA00A (PAB)",5121,"HK1003-Rev.0E-3",TT_Task,"57050",-,-,-,61,TK_Active,22/08/2021,22/08/2021,24/10/2021,,"SI20UZ6A30 FF","SI20UZ6A30","SI20UZ6A40 FF","SI20UZ6A40",55,55,64,,12,12,14,,27,1136,"HK1003 -Blackpoint D2 - Rev.0E DD30092021;Modules_from_ZIN107;Modules_from_ZIN107"
1.1.1-460,SI20UZ6A40,"ERECTION,NDT SB PIPES / VALVES CA02-UZ-WA00A (PAB)",5121,"HK1003-Rev.0E-3",TT_Task,"57050",-,-,-,0,TK_NotStart,04/10/2021,,24/10/2021,,"SI20UZ6A35 FF","SI20UZ6A35","SI20PAB5-100 FF","SI20PAB5-100",61,,64,,14,,14,,31,1136,"HK1003 -Blackpoint D2 - Rev.0E DD30092021;Modules_from_ZIN107;Modules_from_ZIN107"
1.1.1-461,SI-----2E94,"CONTRACT INTO FORCE / ORDER VALVES",5121,"HK1003-Rev.0E-3",TT_Mile,"57050",-,-,-,100,TK_Complete,19/04/2021,19/04/2021,19/04/2021,19/04/2021,"SI-----2E89 SS","SI-----2E89","SI----P3I21 FS","SI----P3I21",37,37,37,37,8,8,8,8,9,,"HK1003 -Blackpoint D2 - Rev.0E DD30092021;Modules_from_ZIN107;Modules_from_ZIN107"
1.1.1-462,SI20---3B97,"ERECTION MANUALS ON SITE (CLOUD) FOR OFF RACK PIPING LOT 7",5121,"HK1003-Rev.0E-3",TT_FinMile,"57050",-,-,-,0,TK_NotStart,17/03/2022,,17/03/2022,,"SI---1P2H529 FS","SI---1P2H529","SI20---3B98 FF","SI20---3B98",84,,84,,19,,19,,53,736,"HK1003 -Blackpoint D2 - Rev.0E DD30092021;Modules_from_ZIN107;Modules_from_ZIN107"
1.1.1-463,SI20---3B98,"(RFS) READY FOR SHIPMENT OFFRACK / YARD LOT 7",5121,"HK1003-Rev.0E-3",TT_FinMile,"57050",-,-,-,0,TK_NotStart,28/04/2022,,28/04/2022,,"SI20---3B97 FF,SI20---4-19 FS","SI20---3B97,SI20---4-19","SI20---4B32 FS","SI20---4B32",90,,90,,21,,21,,60,736,"HK1003 -Blackpoint D2 - Rev.0E DD30092021;Modules_from_ZIN107;Modules_from_ZIN107"
1.1.1-464,SI20---4B32,"TRANSPORT OFFRACK PIPING LOT 7",5121,"HK1003-Rev.0E-3",TT_Task,"57050",-,-,-,0,TK_NotStart,29/04/2022,,02/06/2022,,"SI20---3B98 FS","SI20---3B98","SI20UBF620 FF,SI20UEZ6B-15 FS,SI20UEZ6A-15 FS,SI20UMY6B5 FS,SI20UVM6B10 FS,SI20UEN620 FS,SI20URA6-20 FS,SI20UMY6B-20 FS,SI20UHA6B-20 FS,SI20UHW6A-20 FS,SI20UHA6-20 FS,SI20UMC6B-20 FS,SI20UMC6B-60 FS,SI20UMC6B-40 FS,SI20UMC6A-20 FS,SI20UMC6A-35 FS,SI20UMC6-20 FS,SI20ULD6B20 FS","SI20UBF620,SI20UEZ6B-15,SI20UEZ6A-15,SI20UMY6B5,SI20UVM6B10,SI20UEN620,SI20URA6-20,SI20UMY6B-20,SI20UHA6B-20,SI20UHW6A-20,SI20UHA6-20,SI20UMC6B-20,SI20UMC6B-60,SI20UMC6B-40,SI20UMC6A-20,SI20UMC6A-35,SI20UMC6-20,SI20ULD6B20",90,,95,,21,,22,,60,736,"HK1003 -Blackpoint D2 - Rev.0E DD30092021;Modules_from_ZIN107;Modules_from_ZIN107"
1.1.1-465,SI20---3B96,"PREFABRICATION OF OFFRACK PIPING FOR SHIPMENT LOT 7",5121,"HK1003-Rev.0E-3",TT_Task,"57050",-,-,-,0,TK_NotStart,05/11/2021,,31/03/2022,,"SI---1P2H529 FS,SI20---3B94 SS","SI---1P2H529,SI20---3B94","SI20---3-78 FS","SI20---3-78",65,,86,,15,,20,,37,736,"HK1003 -Blackpoint D2 - Rev.0E DD30092021;Modules_from_ZIN107;Modules_from_ZIN107"
1.1.1-466,SI20UMC5B96,"ERECTION CRANE WALKWAY 20SMM03 20UMC",5121,"HK1003-Rev.0E-3",TT_Task,"57050",-,-,-,0,TK_NotStart,28/03/2022,,17/04/2022,,"SI20UMC5B47 FF","SI20UMC5B47","SI20UMC5B97 FS","SI20UMC5B97",86,,89,,20,,20,,54,368,"HK1003 -Blackpoint D2 - Rev.0E DD30092021;Modules_from_ZIN107;Modules_from_ZIN107"
1.1.1-467,SI-----2E95,"ORDER MTO LONG LEAD ITEMS (80%)",5121,"HK1003-Rev.0E-3",TT_Mile,"57050",-,-,-,100,TK_Complete,19/03/2021,19/03/2021,19/03/2021,19/03/2021,"SI-----2E87 FS","SI-----2E87","SI20---3M30 FS,SI-----2E86 FS","SI20---3M30,SI-----2E86",32,32,32,32,7,7,7,7,6,,"HK1003 -Blackpoint D2 - Rev.0E DD30092021;Modules_from_ZIN107;Modules_from_ZIN107"
1.1.1-468,SI20MAW6M12,"INSTALLATION OF MAW VALVES IN MODULE 20MAW50Y",5121,"HK1003-Rev.0E-3",TT_Task,"57050",-,-,-,0,TK_NotStart,07/04/2022,,20/04/2022,,"SI20MA-4-46 FS","SI20MA-4-46","SI20MAW6M11 FS","SI20MAW6M11",87,,89,,20,,20,,56,632,"HK1003 -Blackpoint D2 - Rev.0E DD30092021;Modules_from_ZIN107;Modules_from_ZIN107"
1.1.1-469,SI20MAW6M13,"INSTALLATION OF MAW VALVES IN MODULE 20MAW10Y",5121,"HK1003-Rev.0E-3",TT_Task,"57050",-,-,-,0,TK_NotStart,07/04/2022,,20/04/2022,,"SI20MA-4-46 FS","SI20MA-4-46","SI20MAW6M10 FS","SI20MAW6M10",87,,89,,20,,20,,56,608,"HK1003 -Blackpoint D2 - Rev.0E DD30092021;Modules_from_ZIN107;Modules_from_ZIN107"
1.1.1-470,SI20---3B99,"PREFABRICATION OF LAST ITEMS FOR SHIPMENT LOT 3",5121,"HK1003-Rev.0E-3",TT_Task,"57050",-,-,-,0,TK_NotStart,03/03/2022,,09/03/2022,,"SI20---3B51 FS","SI20---3B51","SI20---3B52 FF","SI20---3B52",82,,83,,19,,19,,51,1120,"HK1003 -Blackpoint D2 - Rev.0E DD30092021;Modules_from_ZIN107;Modules_from_ZIN107"
1.1.2,57049,"Stefan_Schroeter_Delta_Engineering",5121,"HK1003-Rev.0E-3",WBS,"57048",,,,,Active,01/08/2020,01/08/2020,15/06/2022,,,,,,0,0,97,,0,0,22,,,,"HK1003 -Blackpoint D2 - Rev.0E DD30092021;Modules_from_ZIN107"
1.1.2-1,SI20---2M61,"PROJECT SPECIFIC CHECKUP IF PM80 AND / OR LNTP ARE NECESSARY FOR (A)",5121,"HK1003-Rev.0E-3",TT_Mile,"57049",-,-,-,100,TK_Complete,01/08/2020,01/08/2020,01/08/2020,01/08/2020,"SI20---2M10 SS","SI20---2M10","SI20---2M51 SS","SI20---2M51",0,0,0,0,0,0,0,0,0,,"HK1003 -Blackpoint D2 - Rev.0E DD30092021;Modules_from_ZIN107;Stefan_Schroeter_Delta_Engineering"
1.1.2-2,SI20UMY2A68,"DELTA DESIGN MEDIUM LEAD ITEMS INCL. MTO",5121,"HK1003-Rev.0E-3",TT_Task,"57049",-,-,-,100,TK_Complete,13/11/2020,13/11/2020,05/03/2021,05/03/2021,"SI-----2M11 SS","SI-----2M11","SI-----2F71 SS,SI---1P2-10 SS,SI---5P2-10 SS,SI---4P2-10 SS,SI---3P2-10 SS,SI---2P2-10 SS,SI-----2M18 FS","SI-----2F71,SI---1P2-10,SI---5P2-10,SI---4P2-10,SI---3P2-10,SI---2P2-10,SI-----2M18",14,14,30,30,3,3,7,7,0,,"HK1003 -Blackpoint D2 - Rev.0E DD30092021;Modules_from_ZIN107;Stefan_Schroeter_Delta_Engineering"
1.1.2-3,SI-----2M13,"DELTA DESIGN / VERIFICATION GROUP V",5121,"HK1003-Rev.0E-3",TT_Task,"57049",-,-,-,100,TK_Complete,13/02/2021,13/02/2021,05/03/2021,05/03/2021,"SI-----2M12 SS","SI-----2M12","SI---5P2-10 FS","SI---5P2-10",28,28,30,30,6,6,7,7,4,,"HK1003 -Blackpoint D2 - Rev.0E DD30092021;Modules_from_ZIN107;Stefan_Schroeter_Delta_Engineering"
1.1.2-4,SI-----2M12,"DELTA DESIGN / VERIFICATION GROUP IV",5121,"HK1003-Rev.0E-3",TT_Task,"57049",-,-,-,100,TK_Complete,30/01/2021,30/01/2021,05/03/2021,05/03/2021,"SI-----2M09 SS","SI-----2M09","SI-----2M13 SS,SI---4P2-10 FS","SI-----2M13,SI---4P2-10",26,26,30,30,6,6,7,7,3,,"HK1003 -Blackpoint D2 - Rev.0E DD30092021;Modules_from_ZIN107;Stefan_Schroeter_Delta_Engineering"
1.1.2-5,SI-----2M14,"CONCEPT / PLANT DESIGN YARD AREA",5121,"HK1003-Rev.0E-3",TT_Mile,"57049",-,-,-,100,TK_Complete,13/11/2020,13/11/2020,13/11/2020,13/11/2020,"SI-----2M15 SS","SI-----2M15","SI-----2M11 SS","SI-----2M11",14,14,14,14,3,3,3,3,0,,"HK1003 -Blackpoint D2 - Rev.0E DD30092021;Modules_from_ZIN107;Stefan_Schroeter_Delta_Engineering"
1.1.2-6,SI---5P2-10,"(M2) FOR ORDER ABILITY GROUP V (NO TOTAL M2)",5121,"HK1003-Rev.0E-3",TT_Mile,"57049",-,-,-,100,TK_Complete,10/06/2021,10/06/2021,10/06/2021,10/06/2021,"SI20UMY2A68 SS,SI-----2M16 SS,SI-----2M13 FS","SI20UMY2A68,SI-----2M16,SI-----2M13","SI20---2B85 FS","SI20---2B85",44,44,44,44,10,10,10,10,16,,"HK1003 -Blackpoint D2 - Rev.0E DD30092021;Modules_from_ZIN107;Stefan_Schroeter_Delta_Engineering"
1.1.2-7,SI---4P2-10,"(M2) FOR ORDER ABILITY GROUP IV (NO TOTAL M2)",5121,"HK1003-Rev.0E-3",TT_Mile,"57049",-,-,-,100,TK_Complete,02/06/2021,02/06/2021,02/06/2021,02/06/2021,"SI20UMY2A68 SS,SI-----2M16 SS,SI-----2M12 FS","SI20UMY2A68,SI-----2M16,SI-----2M12","SI20---2B85 FS","SI20---2B85",43,43,43,43,10,10,10,10,15,,"HK1003 -Blackpoint D2 - Rev.0E DD30092021;Modules_from_ZIN107;Stefan_Schroeter_Delta_Engineering"
1.1.2-8,SI---3P2-10,"(M2) FOR ORDER ABILITY GROUP III (NO TOTAL M2)",5121,"HK1003-Rev.0E-3",TT_Mile,"57049",-,-,-,100,TK_Complete,19/05/2021,19/05/2021,19/05/2021,19/05/2021,"SI20UMY2A68 SS,SI-----2M16 SS,SI-----2M09 FS","SI20UMY2A68,SI-----2M16,SI-----2M09","SI20---2B85 FS","SI20---2B85",41,41,41,41,9,9,9,9,13,,"HK1003 -Blackpoint D2 - Rev.0E DD30092021;Modules_from_ZIN107;Stefan_Schroeter_Delta_Engineering"
1.1.2-9,SI---2P2-10,"(M2) FOR ORDER ABILITY GROUP II (NO TOTAL M2)",5121,"HK1003-Rev.0E-3",TT_Mile,"57049",-,-,-,100,TK_Complete,06/05/2021,06/05/2021,06/05/2021,06/05/2021,"SI20UMY2A68 SS,SI-----2M16 SS,SI-----2M17 FS","SI20UMY2A68,SI-----2M16,SI-----2M17","SI20---2B85 FS","SI20---2B85",39,39,39,39,9,9,9,9,11,,"HK1003 -Blackpoint D2 - Rev.0E DD30092021;Modules_from_ZIN107;Stefan_Schroeter_Delta_Engineering"
1.1.2-10,SI---1P2-10,"(M2) FOR ORDER ABILITY GROUP I (NO TOTAL M2)",5121,"HK1003-Rev.0E-3",TT_Mile,"57049",-,-,-,100,TK_Complete,06/05/2021,06/05/2021,06/05/2021,06/05/2021,"SI20UMY2A68 SS,SI-----2M16 FS,SI20UMY2A67 FS","SI20UMY2A68,SI-----2M16,SI20UMY2A67","SI20---2B85 FS","SI20---2B85",39,39,39,39,9,9,9,9,11,,"HK1003 -Blackpoint D2 - Rev.0E DD30092021;Modules_from_ZIN107;Stefan_Schroeter_Delta_Engineering"
1.1.2-11,SI-----2M35,"DELTA DESIGN / VERIFICATION EKG",5121,"HK1003-Rev.0E-3",TT_Task,"57049",-,-,-,100,TK_Complete,16/01/2021,16/01/2021,29/01/2021,29/01/2021,"SI-----2M08 FF","SI-----2M08","SI-----2M30 FS,SI-----2-00 SS,SI--EKG2-10 FS","SI-----2M30,SI-----2-00,SI--EKG2-10",24,24,25,25,5,5,6,6,2,,"HK1003 -Blackpoint D2 - Rev.0E DD30092021;Modules_from_ZIN107;Stefan_Schroeter_Delta_Engineering"
1.1.2-12,SI-----2M34,"DELTA DESIGN / VERIFICATION MAA / MAB / MAV",5121,"HK1003-Rev.0E-3",TT_Task,"57049",-,-,-,100,TK_Complete,09/01/2021,09/01/2021,29/01/2021,29/01/2021,"SI-----2M08 FF","SI-----2M08","SI-----2M30 FS,SI-----2-00 FS,SI--MA-2E10 FS","SI-----2M30,SI-----2-00,SI--MA-2E10",23,23,25,25,5,5,6,6,1,,"HK1003 -Blackpoint D2 - Rev.0E DD30092021;Modules_from_ZIN107;Stefan_Schroeter_Delta_Engineering"
1.1.2-13,SI-----2M33,"DELTA DESIGN / VERIFICATION MAG / MAL / MAM / MAW",5121,"HK1003-Rev.0E-3",TT_Task,"57049",-,-,-,100,TK_Complete,09/01/2021,09/01/2021,29/01/2021,29/01/2021,"SI-----2M08 FF","SI-----2M08","SI-----2M30 FS,SI-----2-00 FS,SI--MA-2-10 FS","SI-----2M30,SI-----2-00,SI--MA-2-10",23,23,25,25,5,5,6,6,1,,"HK1003 -Blackpoint D2 - Rev.0E DD30092021;Modules_from_ZIN107;Stefan_Schroeter_Delta_Engineering"
1.1.2-14,SI-----2M32,"DELTA DESIGN / VERIFICATION PAB 20",5121,"HK1003-Rev.0E-3",TT_Task,"57049",-,-,-,100,TK_Complete,09/01/2021,09/01/2021,29/01/2021,29/01/2021,"SI-----2M08 FF","SI-----2M08","SI-----2M30 FS,SI--P--2-00 FS,SI--PAB2-10 FS","SI-----2M30,SI--P--2-00,SI--PAB2-10",23,23,25,25,5,5,6,6,1,,"HK1003 -Blackpoint D2 - Rev.0E DD30092021;Modules_from_ZIN107;Stefan_Schroeter_Delta_Engineering"
1.1.2-15,SI-----2M31,"DELTA DESIGN / VERIFICATION LAB HP",5121,"HK1003-Rev.0E-3",TT_Task,"57049",-,-,-,100,TK_Complete,09/01/2021,09/01/2021,29/01/2021,29/01/2021,"SI-----2M08 FF","SI-----2M08","SI-----2M30 FS,SI--L--2-00 SS,SI--LAB2-10 FS","SI-----2M30,SI--L--2-00,SI--LAB2-10",23,23,25,25,5,5,6,6,1,,"HK1003 -Blackpoint D2 - Rev.0E DD30092021;Modules_from_ZIN107;Stefan_Schroeter_Delta_Engineering"
1.1.2-16,SI-----2M29,"DELTA DESIGN / VERIFICATION LBx",5121,"HK1003-Rev.0E-3",TT_Task,"57049",-,-,-,100,TK_Complete,09/01/2021,09/01/2021,29/01/2021,29/01/2021,"SI--H--2-10 SS,SI-----2M08 FF","SI--H--2-10,SI-----2M08","SI-----2M30 FS,SI--L--2-00 SS,SI-----2M39 FS,SI--LB-2-10 FS","SI-----2M30,SI--L--2-00,SI-----2M39,SI--LB-2-10",23,23,25,25,5,5,6,6,1,,"HK1003 -Blackpoint D2 - Rev.0E DD30092021;Modules_from_ZIN107;Stefan_Schroeter_Delta_Engineering"
1.1.2-17,SI-----2M08,"DELTA DESIGN LONG LEAD ITEMS INCL. MTO",5121,"HK1003-Rev.0E-3",TT_Task,"57049",-,-,-,100,TK_Complete,18/11/2020,18/11/2020,29/01/2021,29/01/2021,"SI-----1-01 FS","SI-----1-01","SI-----2M20 SS,SI--LB-2-10 FS,SI--EKG2-10 FS,SI--MA-2E10 FS,SI--MA-2-10 FS,SI--PAB2-10 FS,SI--LAB2-10 FS,SI-----2E66 SS,SI----P2J85 FS,SI-----2M31 FF,SI-----2M29 FF,SI-----2M32 FF,SI-----2M35 FF,SI-----2M34 FF,SI-----2M33 FF,SI--H--2-10 SS","SI-----2M20,SI--LB-2-10,SI--EKG2-10,SI--MA-2E10,SI--MA-2-10,SI--PAB2-10,SI--LAB2-10,SI-----2E66,SI----P2J85,SI-----2M31,SI-----2M29,SI-----2M32,SI-----2M35,SI-----2M34,SI-----2M33,SI--H--2-10",15,15,25,25,3,3,6,6,0,,"HK1003 -Blackpoint D2 - Rev.0E DD30092021;Modules_from_ZIN107;Stefan_Schroeter_Delta_Engineering"
1.1.2-18,SI-----2M30,"30% DESIGN REVIEW (3DR) BUILDING BLOCKS",5121,"HK1003-Rev.0E-3",TT_Mile,"57049",-,-,-,100,TK_Complete,12/03/2021,12/03/2021,12/03/2021,12/03/2021,"SI-----2M39 SS,SI-----2M29 FS,SI-----2M31 FS,SI-----2M32 FS,SI-----2M33 FS,SI-----2M34 FS,SI-----2M35 FS,SI-----1-05 FS,SI-----2E66 FS,SI----P2J85 FS,SI-----2E87 SS","SI-----2M39,SI-----2M29,SI-----2M31,SI-----2M32,SI-----2M33,SI-----2M34,SI-----2M35,SI-----1-05,SI-----2E66,SI----P2J85,SI-----2E87","SI--LCB2B20 FS,SI--LCA2B20 FS,SI--LAC2B20 FS","SI--LCB2B20,SI--LCA2B20,SI--LAC2B20",31,31,31,31,7,7,7,7,6,,"HK1003 -Blackpoint D2 - Rev.0E DD30092021;Modules_from_ZIN107;Stefan_Schroeter_Delta_Engineering"
1.1.2-19,SI-----2-00,"(M1) DATA / P&ID FOR ALL OTHER SYSTEMS",5121,"HK1003-Rev.0E-3",TT_Mile,"57049",-,-,-,100,TK_Complete,14/02/2021,14/02/2021,14/02/2021,14/02/2021,"SI-----2M35 SS,SI-----2M34 FS,SI-----2M33 FS,SI--G--2A05 FS","SI-----2M35,SI-----2M34,SI-----2M33,SI--G--2A05","SI--G--2-10 SS","SI--G--2-10",28,28,28,28,6,6,6,6,4,,"HK1003 -Blackpoint D2 - Rev.0E DD30092021;Modules_from_ZIN107;Stefan_Schroeter_Delta_Engineering"
1.1.2-20,SI--EKG2-10,"(M2) FOR ORDER ABILITY EKG (NO TOTAL M2)",5121,"HK1003-Rev.0E-3",TT_Mile,"57049",-,-,-,100,TK_Complete,06/05/2021,06/05/2021,06/05/2021,06/05/2021,"SI--3332-65 SS,SI-----2M08 FS,SI-----2M20 SS,SI-----2M35 FS","SI--3332-65,SI-----2M08,SI-----2M20,SI-----2M35","SI20---2B85 FS","SI20---2B85",39,39,39,39,9,9,9,9,11,,"HK1003 -Blackpoint D2 - Rev.0E DD30092021;Modules_from_ZIN107;Stefan_Schroeter_Delta_Engineering"
1.1.2-21,SI--MA-2E10,"(M2) FOR ORDER ABILITY MAA / MAB / MAV (NO TOTAL M2)",5121,"HK1003-Rev.0E-3",TT_Mile,"57049",-,-,-,100,TK_Complete,19/05/2021,19/05/2021,19/05/2021,19/05/2021,"SI--3332-65 SS,SI-----2M08 FS,SI-----2M20 SS,SI--H--2-10 FS,SI-----2M34 FS","SI--3332-65,SI-----2M08,SI-----2M20,SI--H--2-10,SI-----2M34","SI20---2B85 FS","SI20---2B85",41,41,41,41,9,9,9,9,13,,"HK1003 -Blackpoint D2 - Rev.0E DD30092021;Modules_from_ZIN107;Stefan_Schroeter_Delta_Engineering"
1.1.2-22,SI-----2M39,"PRELIMINARY LBx STRESS REPORT AVAILABLE",5121,"HK1003-Rev.0E-3",TT_Mile,"57049",-,-,-,100,TK_Complete,30/01/2021,30/01/2021,30/01/2021,30/01/2021,"SI-----2M29 FS","SI-----2M29","SI-----2M30 SS","SI-----2M30",26,26,26,26,6,6,6,6,3,,"HK1003 -Blackpoint D2 - Rev.0E DD30092021;Modules_from_ZIN107;Stefan_Schroeter_Delta_Engineering"
1.1.2-23,SI--MA-2-10,"(M2) FOR ORDER ABILITY MAG / MAL / MAM / MAW (NO TOTAL M2)",5121,"HK1003-Rev.0E-3",TT_Mile,"57049",-,-,-,100,TK_Complete,06/05/2021,06/05/2021,06/05/2021,06/05/2021,"SI--3332-65 SS,SI-----2M08 FS,SI-----2M20 SS,SI-----2M33 FS","SI--3332-65,SI-----2M08,SI-----2M20,SI-----2M33","SI20---2B85 FS","SI20---2B85",39,39,39,39,9,9,9,9,11,,"HK1003 -Blackpoint D2 - Rev.0E DD30092021;Modules_from_ZIN107;Stefan_Schroeter_Delta_Engineering"
1.1.2-24,SI--PAB2-10,"(M2) FOR ORDER ABILITY PAB 20 (NO TOTAL M2)",5121,"HK1003-Rev.0E-3",TT_Mile,"57049",-,-,-,100,TK_Complete,22/04/2021,22/04/2021,22/04/2021,22/04/2021,"SI--3332-65 SS,SI-----2M08 FS,SI-----2M20 SS,SI-----2M32 FS","SI--3332-65,SI-----2M08,SI-----2M20,SI-----2M32","SI20---2B85 FS","SI20---2B85",37,37,37,37,8,8,8,8,9,,"HK1003 -Blackpoint D2 - Rev.0E DD30092021;Modules_from_ZIN107;Stefan_Schroeter_Delta_Engineering"
1.1.2-25,SI--H--2-10,"HRSG STARTS LBx / Hxx VERIFICATION",5121,"HK1003-Rev.0E-3",TT_Mile,"57049",-,-,-,100,TK_Complete,12/12/2020,12/12/2020,12/12/2020,12/12/2020,"SI-----1-01 FS,SI-----2M08 SS","SI-----1-01,SI-----2M08","SI--HA-2A55 SS,SI-----2M29 SS,SI-----2M10 FS,SI--MA-2E10 FS","SI--HA-2A55,SI-----2M29,SI-----2M10,SI--MA-2E10",19,19,19,19,4,4,4,4,1,,"HK1003 -Blackpoint D2 - Rev.0E DD30092021;Modules_from_ZIN107;Stefan_Schroeter_Delta_Engineering"
1.1.2-26,SI--LAB2-10,"(M2) FOR ORDER ABILITY LAB HP (NO TOTAL M2)",5121,"HK1003-Rev.0E-3",TT_Mile,"57049",-,-,-,100,TK_Complete,22/04/2021,22/04/2021,22/04/2021,22/04/2021,"SI--3332-65 SS,SI-----2M08 FS,SI-----2M20 SS,SI-----2M31 FS","SI--3332-65,SI-----2M08,SI-----2M20,SI-----2M31","SI20---2B85 FS","SI20---2B85",37,37,37,37,8,8,8,8,9,,"HK1003 -Blackpoint D2 - Rev.0E DD30092021;Modules_from_ZIN107;Stefan_Schroeter_Delta_Engineering"
1.1.2-27,SI--LB-2-10,"(M2) FOR ORDER ABILITY LBx (NO TOTAL M2)",5121,"HK1003-Rev.0E-3",TT_Mile,"57049",-,-,-,100,TK_Complete,22/04/2021,22/04/2021,22/04/2021,22/04/2021,"SI--3332-65 SS,SI-----2M08 FS,SI-----2M20 SS,SI-----2M29 FS","SI--3332-65,SI-----2M08,SI-----2M20,SI-----2M29","SI20---2B85 FS","SI20---2B85",37,37,37,37,8,8,8,8,9,,"HK1003 -Blackpoint D2 - Rev.0E DD30092021;Modules_from_ZIN107;Stefan_Schroeter_Delta_Engineering"
1.1.2-28,SI-----2M20,"INPUT FROM GT / ST / GENO / HRSG / BoP / COMPONENTS",5121,"HK1003-Rev.0E-3",TT_Mile,"57049",-,-,-,100,TK_Complete,02/01/2021,02/01/2021,02/01/2021,02/01/2021,"SI-----2M08 SS,SI-----2M10 SS","SI-----2M08,SI-----2M10","SI-----2M16 SS,SI--EKG2-10 SS,SI--MA-2E10 SS,SI--MA-2-10 SS,SI--PAB2-10 SS,SI--LAB2-10 SS,SI--LB-2-10 SS","SI-----2M16,SI--EKG2-10,SI--MA-2E10,SI--MA-2-10,SI--PAB2-10,SI--LAB2-10,SI--LB-2-10",22,22,22,22,5,5,5,5,1,,"HK1003 -Blackpoint D2 - Rev.0E DD30092021;Modules_from_ZIN107;Stefan_Schroeter_Delta_Engineering"
1.1.2-29,SI-----2M96,"ADAPTION OF COLLUMN GRID, FRAME CONCEPT",5121,"HK1003-Rev.0E-3",TT_Task,"57049",-,-,-,100,TK_Complete,15/08/2020,15/08/2020,09/10/2020,09/10/2020,"SI-----2M00 FS","SI-----2M00","SI-----2M40 FS,SI-----2M36 FS","SI-----2M40,SI-----2M36",2,2,9,9,0,0,2,2,0,,"HK1003 -Blackpoint D2 - Rev.0E DD30092021;Modules_from_ZIN107;Stefan_Schroeter_Delta_Engineering"
1.1.2-30,SI-----2M95,"ADAPTION OF TRANSPORT UNIT,  ARANGEMENTS, ERECTION",5121,"HK1003-Rev.0E-3",TT_Task,"57049",-,-,-,100,TK_Complete,02/12/2020,02/12/2020,26/01/2021,26/01/2021,"SI-----2M00 FS","SI-----2M00","SI-----2M44 FS,SI-----2M40 FS,SI-----2M36 FS","SI-----2M44,SI-----2M40,SI-----2M36",17,17,25,25,4,4,5,5,1,,"HK1003 -Blackpoint D2 - Rev.0E DD30092021;Modules_from_ZIN107;Stefan_Schroeter_Delta_Engineering"
1.1.2-31,SI----P2J85,"THERMODYNAMICAL INPUT FROM GT / ST / HRSG / (HFD, WATER BALANCE, WS-DOS, P&L PLAN)",5121,"HK1003-Rev.0E-3",TT_Mile,"57049",-,-,-,100,TK_Complete,17/01/2021,17/01/2021,17/01/2021,17/01/2021,"SI--G--2-20 FS,SI-----2M38 SS,SI-----1-04 FS,SI-----2M08 FS,SI--HA-2A86 FS","SI--G--2-20,SI-----2M38,SI-----1-04,SI-----2M08,SI--HA-2A86","SI-----2M30 FS","SI-----2M30",24,24,24,24,5,5,5,5,2,,"HK1003 -Blackpoint D2 - Rev.0E DD30092021;Modules_from_ZIN107;Stefan_Schroeter_Delta_Engineering"
1.1.2-32,SI20UMY2A67,"DELTA DESIGN / VERIFICATION GROUP I",5121,"HK1003-Rev.0E-3",TT_Task,"57049",-,-,-,100,TK_Complete,02/01/2021,02/01/2021,22/01/2021,22/01/2021,"SI-----2M11 FS,SI-----2M16 FS","SI-----2M11,SI-----2M16","SI-----2F71 SS,SI-----2M17 SS,SI-----2M18 FS,SI---1P2-10 FS","SI-----2F71,SI-----2M17,SI-----2M18,SI---1P2-10",22,22,24,24,5,5,5,5,1,,"HK1003 -Blackpoint D2 - Rev.0E DD30092021;Modules_from_ZIN107;Stefan_Schroeter_Delta_Engineering"
1.1.2-33,SI-----2M10,"CONTACT PERSON FROM CUSTOMER, HRSG, GT, ST ANNOUNCED AND READY ALONG WITH TEAM SETUP",5121,"HK1003-Rev.0E-3",TT_Mile,"57049",-,-,-,100,TK_Complete,02/01/2021,02/01/2021,02/01/2021,02/01/2021,"SI--HA-2-94 FS,SI20---2M51 SS,SI--H--2-10 FS","SI--HA-2-94,SI20---2M51,SI--H--2-10","SI-----2M16 FS,SI-----2M20 SS,SI-----2M38 FS","SI-----2M16,SI-----2M20,SI-----2M38",22,22,22,22,5,5,5,5,1,,"HK1003 -Blackpoint D2 - Rev.0E DD30092021;Modules_from_ZIN107;Stefan_Schroeter_Delta_Engineering"
1.1.2-34,SI-----2M15,"PLANT DESIGN YARD AREA",5121,"HK1003-Rev.0E-3",TT_Task,"57049",-,-,-,100,TK_Complete,30/08/2020,30/08/2020,19/12/2020,19/12/2020,"SI20---2M10 SS","SI20---2M10","SI-----2M14 SS","SI-----2M14",4,4,20,20,0,0,4,4,0,,"HK1003 -Blackpoint D2 - Rev.0E DD30092021;Modules_from_ZIN107;Stefan_Schroeter_Delta_Engineering"
1.1.2-35,SI-----2M00,"3D MODEL SETUP & CLEANING",5121,"HK1003-Rev.0E-3",TT_Task,"57049",-,-,-,100,TK_Complete,01/08/2020,01/08/2020,14/08/2020,14/08/2020,"SI20---2M10 SS","SI20---2M10","SI-----2M38 SS,SI-----2M96 FS,SI-----2M95 FS","SI-----2M38,SI-----2M96,SI-----2M95",0,0,1,1,0,0,0,0,0,,"HK1003 -Blackpoint D2 - Rev.0E DD30092021;Modules_from_ZIN107;Stefan_Schroeter_Delta_Engineering"
1.1.2-36,SI-----2M38,"TERMINAL POINT LOCATION / VERIFICATION",5121,"HK1003-Rev.0E-3",TT_Task,"57049",-,-,-,100,TK_Complete,17/01/2021,17/01/2021,30/01/2021,30/01/2021,"SI-----2M00 SS,SI-----2M10 FS","SI-----2M00,SI-----2M10","SI----P2J85 SS","SI----P2J85",24,24,26,26,5,5,6,6,2,,"HK1003 -Blackpoint D2 - Rev.0E DD30092021;Modules_from_ZIN107;Stefan_Schroeter_Delta_Engineering"
1.1.2-37,SI20---2M10,"(A) PROJECT START = FULL ENGINEERING = FULL TEAM SETUP",5121,"HK1003-Rev.0E-3",TT_Mile,"57049",-,-,-,100,TK_Complete,01/08/2020,01/08/2020,01/08/2020,01/08/2020,"SI-----1-03 SS,SI-----1-01 SS","SI-----1-03,SI-----1-01","SI--HA-2-94 FS,SI--PM-2-90 FS,SI--PM-2-60 FS,SI--PM-2-30 FS,SI20---2M61 SS,SI-----2M00 SS,SI-----2M15 SS,SI20---2M56 SS,SI20---2M55 SS,SI-----1-04 SS,SI--HA-2A11 SS,SI--3332-01 SS,SI20---2M51 SS,SI--L--2-35 FS,SI--P--2-35 FS,SI20---2M53 SS,SI--2222-108 SS,SI--UBA2G15 FS,SI--3331-31 FS,SI20HA-3D25 FF,SI20HA-3D25 FS,SI20HA-3-15# FS,SI20HA-3-15# FF,SI20HA-3D26 FS,SI--SG-2-10 FS","SI--HA-2-94,SI--PM-2-90,SI--PM-2-60,SI--PM-2-30,SI20---2M61,SI-----2M00,SI-----2M15,SI20---2M56,SI20---2M55,SI-----1-04,SI--HA-2A11,SI--3332-01,SI20---2M51,SI--L--2-35,SI--P--2-35,SI20---2M53,SI--2222-108,SI--UBA2G15,SI--3331-31,SI20HA-3D25,SI20HA-3D25,SI20HA-3-15#,SI20HA-3-15#,SI20HA-3D26,SI--SG-2-10",0,0,0,0,0,0,0,0,0,,"HK1003 -Blackpoint D2 - Rev.0E DD30092021;Modules_from_ZIN107;Stefan_Schroeter_Delta_Engineering"
1.1.2-38,SI20UMY4M25,"TRANSPORT MODULE 20UMY00Y",5121,"HK1003-Rev.0E-3",TT_Task,"57049",-,-,-,0,TK_NotStart,07/03/2022,,10/04/2022,,"SI20UMY3M80 FS,SI-P221-330& FS","SI20UMY3M80,SI-P221-330&","SI20UMY4M40 FS","SI20UMY4M40",83,,88,,19,,20,,52,216,"HK1003 -Blackpoint D2 - Rev.0E DD30092021;Modules_from_ZIN107;Stefan_Schroeter_Delta_Engineering"
1.1.2-39,SI-----2M09,"DELTA DESIGN / VERIFICATION GROUP III",5121,"HK1003-Rev.0E-3",TT_Task,"57049",-,-,-,100,TK_Complete,30/01/2021,30/01/2021,19/02/2021,19/02/2021,"SI-----2M17 SS,SI-----2M11 FS","SI-----2M17,SI-----2M11","SI-----2M12 SS,SI---3P2-10 FS","SI-----2M12,SI---3P2-10",26,26,28,28,6,6,6,6,3,,"HK1003 -Blackpoint D2 - Rev.0E DD30092021;Modules_from_ZIN107;Stefan_Schroeter_Delta_Engineering"
1.1.2-40,SI--L--2-00,"(M1) DATA / P&ID FOR L-SYSTEMS",5121,"HK1003-Rev.0E-3",TT_Mile,"57049",-,-,-,100,TK_Complete,15/02/2021,15/02/2021,15/02/2021,15/02/2021,"SI-----2M29 SS,SI-----2M31 SS,SI--L--2-05 FS","SI-----2M29,SI-----2M31,SI--L--2-05","SI--P--2-00 SS","SI--P--2-00",28,28,28,28,6,6,6,6,4,,"HK1003 -Blackpoint D2 - Rev.0E DD30092021;Modules_from_ZIN107;Stefan_Schroeter_Delta_Engineering"
1.1.2-41,SI--P--2-00,"(M1) DATA / P&ID FOR P-SYSTEMS",5121,"HK1003-Rev.0E-3",TT_Mile,"57049",-,-,-,100,TK_Complete,15/02/2021,15/02/2021,15/02/2021,15/02/2021,"SI-----2M32 FS,SI--3332-65 SS,SI--L--2-00 SS,SI--P--2-05 FS","SI-----2M32,SI--3332-65,SI--L--2-00,SI--P--2-05","SI--PGB2D75 FS","SI--PGB2D75",28,28,28,28,6,6,6,6,4,,"HK1003 -Blackpoint D2 - Rev.0E DD30092021;Modules_from_ZIN107;Stefan_Schroeter_Delta_Engineering"
1.1.2-42,SI20---2M51,"PIPING ENGINEERING TEAM & PROJECT SETUP",5121,"HK1003-Rev.0E-3",TT_Task,"57049",-,-,-,100,TK_Complete,29/08/2020,29/08/2020,25/09/2020,25/09/2020,"SI20---2M61 SS,SI20---2M53 SS,SI20---2M10 SS","SI20---2M61,SI20---2M53,SI20---2M10","SI-----2M10 SS,SI20---2M60 FS","SI-----2M10,SI20---2M60",4,4,7,7,0,0,1,1,0,,"HK1003 -Blackpoint D2 - Rev.0E DD30092021;Modules_from_ZIN107;Stefan_Schroeter_Delta_Engineering"
1.1.2-43,SI20---2M53,"CONTRACT DOCUMENTS AVAILABLE; PROPOSAL MODELS/DATA/DOCUMENTS AVAILABLE INLC. OFFER MTO / REFERENCE MTO",5121,"HK1003-Rev.0E-3",TT_Mile,"57049",-,-,-,100,TK_Complete,01/08/2020,01/08/2020,01/08/2020,01/08/2020,"SI20---2M10 SS","SI20---2M10","SI20---2M51 SS","SI20---2M51",0,0,0,0,0,0,0,0,0,,"HK1003 -Blackpoint D2 - Rev.0E DD30092021;Modules_from_ZIN107;Stefan_Schroeter_Delta_Engineering"
1.1.2-44,SI20---2M54,"START OF RFQ (WITH MPA)",5121,"HK1003-Rev.0E-3",TT_Mile,"57049",-,-,-,100,TK_Complete,24/10/2020,24/10/2020,24/10/2020,24/10/2020,"SI20---2M56 FS,SI20---2M60 FS","SI20---2M56,SI20---2M60","SI-----2F71 FS,SI-----2E66 FS","SI-----2F71,SI-----2E66",12,12,12,12,2,2,2,2,0,,"HK1003 -Blackpoint D2 - Rev.0E DD30092021;Modules_from_ZIN107;Stefan_Schroeter_Delta_Engineering"
1.1.2-45,SI20---2M60,"PREL. PIPING DESIGN BASIC REPORT (PDBR)",5121,"HK1003-Rev.0E-3",TT_Task,"57049",-,-,-,100,TK_Complete,26/09/2020,26/09/2020,23/10/2020,23/10/2020,"SI20---2M51 FS,SI-----1-01 SS","SI20---2M51,SI-----1-01","SI20---2M54 FS","SI20---2M54",8,8,11,11,1,1,2,2,0,,"HK1003 -Blackpoint D2 - Rev.0E DD30092021;Modules_from_ZIN107;Stefan_Schroeter_Delta_Engineering"
1.1.2-46,SI20---2M56,"PLANT DESIGN POWER CORE",5121,"HK1003-Rev.0E-3",TT_Task,"57049",-,-,-,100,TK_Complete,15/08/2020,15/08/2020,18/09/2020,18/09/2020,"SI20---2M10 SS","SI20---2M10","SI20---2M54 FS","SI20---2M54",2,2,6,6,0,0,1,1,0,,"HK1003 -Blackpoint D2 - Rev.0E DD30092021;Modules_from_ZIN107;Stefan_Schroeter_Delta_Engineering"
1.1.2-47,SI20---2M55,"CREATION OF PROJECT EXECUTION PLANS",5121,"HK1003-Rev.0E-3",TT_Task,"57049",-,-,-,100,TK_Complete,22/08/2020,22/08/2020,18/09/2020,18/09/2020,"SI20---2M10 SS","SI20---2M10","SI-----2F71 FS,SI-----2E66 FS","SI-----2F71,SI-----2E66",3,3,6,6,0,0,1,1,0,,"HK1003 -Blackpoint D2 - Rev.0E DD30092021;Modules_from_ZIN107;Stefan_Schroeter_Delta_Engineering"
1.1.2-48,SI-----2M18,"30% DESIGN REVIEW (3DR) BUILDING BLOCKS",5121,"HK1003-Rev.0E-3",TT_Mile,"57049",-,-,-,100,TK_Complete,24/03/2021,24/03/2021,24/03/2021,24/03/2021,"SI20UMY2A67 FS,SI-----1-05 FS,SI20UMY2A68 FS","SI20UMY2A67,SI-----1-05,SI20UMY2A68","SI-----2M44 SS,SI-----2M40 SS","SI-----2M44,SI-----2M40",33,33,33,33,7,7,7,7,6,,"HK1003 -Blackpoint D2 - Rev.0E DD30092021;Modules_from_ZIN107;Stefan_Schroeter_Delta_Engineering"
1.1.2-49,SI-----2M16,"INPUT FROM GT / ST / GENO / HRSG / BoP / COMPONENTS",5121,"HK1003-Rev.0E-3",TT_Mile,"57049",-,-,-,100,TK_Complete,02/01/2021,02/01/2021,02/01/2021,02/01/2021,"SI-----2M20 SS,SI-----2M10 FS","SI-----2M20,SI-----2M10","SI---5P2-10 SS,SI---4P2-10 SS,SI---3P2-10 SS,SI---2P2-10 SS,SI---1P2-10 FS,SI20UMY2A67 FS","SI---5P2-10,SI---4P2-10,SI---3P2-10,SI---2P2-10,SI---1P2-10,SI20UMY2A67",22,22,22,22,5,5,5,5,1,,"HK1003 -Blackpoint D2 - Rev.0E DD30092021;Modules_from_ZIN107;Stefan_Schroeter_Delta_Engineering"
1.1.2-50,SI-----2M17,"DELTA DESIGN / VERIFICATION GROUP II",5121,"HK1003-Rev.0E-3",TT_Task,"57049",-,-,-,100,TK_Complete,16/01/2021,16/01/2021,12/02/2021,12/02/2021,"SI20UMY2A67 SS,SI-----2M11 FS","SI20UMY2A67,SI-----2M11","SI-----2M09 SS,SI---2P2-10 FS","SI-----2M09,SI---2P2-10",24,24,27,27,5,5,6,6,2,,"HK1003 -Blackpoint D2 - Rev.0E DD30092021;Modules_from_ZIN107;Stefan_Schroeter_Delta_Engineering"
1.1.2-51,SI-----2M11,"MEDIUM LEAD ROUTING ADAPTION",5121,"HK1003-Rev.0E-3",TT_Task,"57049",-,-,-,100,TK_Complete,13/11/2020,13/11/2020,10/12/2020,10/12/2020,"SI-----2M14 SS","SI-----2M14","SI20UMY2A67 FS,SI20UMY2A68 SS,SI-----2M09 FS,SI-----2M17 FS","SI20UMY2A67,SI20UMY2A68,SI-----2M09,SI-----2M17",14,14,18,18,3,3,4,4,0,,"HK1003 -Blackpoint D2 - Rev.0E DD30092021;Modules_from_ZIN107;Stefan_Schroeter_Delta_Engineering"
1.1.2-52,SI20UEY4-125,"TRANSPORT MODULE 20UEY01/02Y",5121,"HK1003-Rev.0E-3",TT_Task,"57049",-,-,-,0,TK_NotStart,03/05/2022,,06/06/2022,,"SI20UEY4-120 FS","SI20UEY4-120","SI20UEY4-130 FS","SI20UEY4-130",91,,96,,21,,22,,61,1344,"HK1003 -Blackpoint D2 - Rev.0E DD30092021;Modules_from_ZIN107;Stefan_Schroeter_Delta_Engineering"
1.1.2-53,SI20ULY4-105,"TRANSPORT STEEL STRUCTURE 20ULY01",5121,"HK1003-Rev.0E-3",TT_Task,"57049",-,-,-,0,TK_NotStart,12/05/2022,,15/06/2022,,"SI20ULY4-100 FS","SI20ULY4-100","SI20ULY4-110 FS","SI20ULY4-110",92,,97,,21,,22,,64,968,"HK1003 -Blackpoint D2 - Rev.0E DD30092021;Modules_from_ZIN107;Stefan_Schroeter_Delta_Engineering"
1.2,57038,"9000  SITE",5121,"HK1003-Rev.0E-3",WBS,"55902",,,,100,Complete,,,,,,,,,0,,0,,0,,0,,,,"HK1003 -Blackpoint D2 - Rev.0E DD30092021"
1.2.1,57045,"9901  SITE + SITE INFRASTRUCTURE",5121,"HK1003-Rev.0E-3",WBS,"57038",,,,100,Complete,,,,,,,,,0,,0,,0,,0,,,,"HK1003 -Blackpoint D2 - Rev.0E DD30092021;9000  SITE"
1.2.1.1,57047,"9901.10  TEMPORARY SITE INSTALLATION",5121,"HK1003-Rev.0E-3",WBS,"57045",,,,,NotStart,,,,,,,,,,,,,,,,,,,"HK1003 -Blackpoint D2 - Rev.0E DD30092021;9000  SITE;9901  SITE + SITE INFRASTRUCTURE"
1.2.1.2,57046,"9901.05  SITE PREPARATION",5121,"HK1003-Rev.0E-3",WBS,"57045",,,,,NotStart,,,,,,,,,,,,,,,,,,,"HK1003 -Blackpoint D2 - Rev.0E DD30092021;9000  SITE;9901  SITE + SITE INFRASTRUCTURE"
1.2.2,57039,"9800  PLANT COMMISSIONING",5121,"HK1003-Rev.0E-3",WBS,"57038",,,,100,Complete,,,,,,,,,0,,0,,0,,0,,,,"HK1003 -Blackpoint D2 - Rev.0E DD30092021;9000  SITE"
1.2.2.1,57044,"9800.10  PERFORMANCE TEST & TRIAL RUN",5121,"HK1003-Rev.0E-3",WBS,"57039",,,,,NotStart,,,,,,,,,,,,,,,,,,,"HK1003 -Blackpoint D2 - Rev.0E DD30092021;9000  SITE;9800  PLANT COMMISSIONING"
1.2.2.2,57040,"9800.05  PLANT COMMISSIONING / CHEMICAL CLEANING / STEAM BLOW",5121,"HK1003-Rev.0E-3",WBS,"57039",,,,100,Complete,,,,,,,,,0,,0,,0,,0,,,,"HK1003 -Blackpoint D2 - Rev.0E DD30092021;9000  SITE;9800  PLANT COMMISSIONING"
1.2.2.2.1,57043,"9800.05.15  PLANT COMMISSIONING COMBINED CYCLE",5121,"HK1003-Rev.0E-3",WBS,"57040",,,,,NotStart,,,,,,,,,,,,,,,,,,,"HK1003 -Blackpoint D2 - Rev.0E DD30092021;9000  SITE;9800  PLANT COMMISSIONING;9800.05  PLANT COMMISSIONING / CHEMICAL CLEANING / STEAM BLOW"
1.2.2.2.2,57042,"9800.05.10  CHEMICAL CLEANING + STEAM BLOWING",5121,"HK1003-Rev.0E-3",WBS,"57040",,,,,NotStart,,,,,,,,,,,,,,,,,,,"HK1003 -Blackpoint D2 - Rev.0E DD30092021;9000  SITE;9800  PLANT COMMISSIONING;9800.05  PLANT COMMISSIONING / CHEMICAL CLEANING / STEAM BLOW"
1.2.2.2.3,57041,"9800.05.05  CHEMICAL CLEANING EQUIPMENT",5121,"HK1003-Rev.0E-3",WBS,"57040",,,,,NotStart,,,,,,,,,,,,,,,,,,,"HK1003 -Blackpoint D2 - Rev.0E DD30092021;9000  SITE;9800  PLANT COMMISSIONING;9800.05  PLANT COMMISSIONING / CHEMICAL CLEANING / STEAM BLOW"
1.3,57023,"8000  AUTOMATION / INSTRUMENTATION & CONTROL",5121,"HK1003-Rev.0E-3",WBS,"55902",,,,100,Complete,,,,,,,,,0,,0,,0,,0,,,,"HK1003 -Blackpoint D2 - Rev.0E DD30092021"
1.3.1,57037,"8160  EMISSIONS MONITORING EQUIPMENT",5121,"HK1003-Rev.0E-3",WBS,"57023",,,,,NotStart,,,,,,,,,,,,,,,,,,,"HK1003 -Blackpoint D2 - Rev.0E DD30092021;8000  AUTOMATION / INSTRUMENTATION & CONTROL"
1.3.2,57024,"8100  AUTOMATION",5121,"HK1003-Rev.0E-3",WBS,"57023",,,,100,Complete,,,,,,,,,0,,0,,0,,0,,,,"HK1003 -Blackpoint D2 - Rev.0E DD30092021;8000  AUTOMATION / INSTRUMENTATION & CONTROL"
1.3.2.1,57036,"8100.55  I&C ERECTION + COMMISSIONING  WSC/HRSG",5121,"HK1003-Rev.0E-3",WBS,"57024",,,,,NotStart,,,,,,,,,,,,,,,,,,,"HK1003 -Blackpoint D2 - Rev.0E DD30092021;8000  AUTOMATION / INSTRUMENTATION & CONTROL;8100  AUTOMATION"
1.3.2.2,57035,"8100.50  I&C ERECTION + COMMISSIONING  ST",5121,"HK1003-Rev.0E-3",WBS,"57024",,,,,NotStart,,,,,,,,,,,,,,,,,,,"HK1003 -Blackpoint D2 - Rev.0E DD30092021;8000  AUTOMATION / INSTRUMENTATION & CONTROL;8100  AUTOMATION"
1.3.2.3,57034,"8100.45  I&C ERECTION + COMMISSIONING  GT",5121,"HK1003-Rev.0E-3",WBS,"57024",,,,,NotStart,,,,,,,,,,,,,,,,,,,"HK1003 -Blackpoint D2 - Rev.0E DD30092021;8000  AUTOMATION / INSTRUMENTATION & CONTROL;8100  AUTOMATION"
1.3.2.4,57033,"8100.40  I&C ERECTION + COMMISSIONING  AUX./ANCILIARY",5121,"HK1003-Rev.0E-3",WBS,"57024",,,,,NotStart,,,,,,,,,,,,,,,,,,,"HK1003 -Blackpoint D2 - Rev.0E DD30092021;8000  AUTOMATION / INSTRUMENTATION & CONTROL;8100  AUTOMATION"
1.3.2.5,57032,"8100.35  I&C CABLES",5121,"HK1003-Rev.0E-3",WBS,"57024",,,,,NotStart,,,,,,,,,,,,,,,,,,,"HK1003 -Blackpoint D2 - Rev.0E DD30092021;8000  AUTOMATION / INSTRUMENTATION & CONTROL;8100  AUTOMATION"
1.3.2.6,57031,"8100.30  I&C HARDWARE FOR FIELD",5121,"HK1003-Rev.0E-3",WBS,"57024",,,,,NotStart,,,,,,,,,,,,,,,,,,,"HK1003 -Blackpoint D2 - Rev.0E DD30092021;8000  AUTOMATION / INSTRUMENTATION & CONTROL;8100  AUTOMATION"
1.3.2.7,57030,"8100.25  I&C HARDWARE FOR CONTROL ROOM EQUIPMENT (OM/ES)",5121,"HK1003-Rev.0E-3",WBS,"57024",,,,,NotStart,,,,,,,,,,,,,,,,,,,"HK1003 -Blackpoint D2 - Rev.0E DD30092021;8000  AUTOMATION / INSTRUMENTATION & CONTROL;8100  AUTOMATION"
1.3.2.8,57027,"8100.20  MANUFACTURING I&C HARDWARE FOR PCC",5121,"HK1003-Rev.0E-3",WBS,"57024",,,,100,Complete,,,,,,,,,0,,0,,0,,0,,,,"HK1003 -Blackpoint D2 - Rev.0E DD30092021;8000  AUTOMATION / INSTRUMENTATION & CONTROL;8100  AUTOMATION"
1.3.2.8.1,57029,"8100.20.10  I&C HARDWARE FOR PCC  UBA63/66/81",5121,"HK1003-Rev.0E-3",WBS,"57027",,,,,NotStart,,,,,,,,,,,,,,,,,,,"HK1003 -Blackpoint D2 - Rev.0E DD30092021;8000  AUTOMATION / INSTRUMENTATION & CONTROL;8100  AUTOMATION;8100.20  MANUFACTURING I&C HARDWARE FOR PCC"
1.3.2.8.2,57028,"8100.20.05  I&C HARDWARE FOR PCC  UBA61",5121,"HK1003-Rev.0E-3",WBS,"57027",,,,,NotStart,,,,,,,,,,,,,,,,,,,"HK1003 -Blackpoint D2 - Rev.0E DD30092021;8000  AUTOMATION / INSTRUMENTATION & CONTROL;8100  AUTOMATION;8100.20  MANUFACTURING I&C HARDWARE FOR PCC"
1.3.2.9,57026,"8100.15  AUTOMATION  I&C UNIT COORDINATION",5121,"HK1003-Rev.0E-3",WBS,"57024",,,,,NotStart,,,,,,,,,,,,,,,,,,,"HK1003 -Blackpoint D2 - Rev.0E DD30092021;8000  AUTOMATION / INSTRUMENTATION & CONTROL;8100  AUTOMATION"
1.3.2.10,57025,"8100.05  AUTOMATION GENERAL ACTIVITIES",5121,"HK1003-Rev.0E-3",WBS,"57024",,,,,NotStart,,,,,,,,,,,,,,,,,,,"HK1003 -Blackpoint D2 - Rev.0E DD30092021;8000  AUTOMATION / INSTRUMENTATION & CONTROL;8100  AUTOMATION"
1.4,56972,"7000  ELECTRICAL SYSTEMS",5121,"HK1003-Rev.0E-3",WBS,"55902",,,,100,Complete,,,,,,,,,0,,0,,0,,0,,,,"HK1003 -Blackpoint D2 - Rev.0E DD30092021"
1.4.1,57022,"7840  PLANT SECURITY SYSTEM",5121,"HK1003-Rev.0E-3",WBS,"56972",,,,,NotStart,,,,,,,,,,,,,,,,,,,"HK1003 -Blackpoint D2 - Rev.0E DD30092021;7000  ELECTRICAL SYSTEMS"
1.4.2,57020,"7830  COMMUNICATION SYSTEMS",5121,"HK1003-Rev.0E-3",WBS,"56972",,,,100,Complete,,,,,,,,,0,,0,,0,,0,,,,"HK1003 -Blackpoint D2 - Rev.0E DD30092021;7000  ELECTRICAL SYSTEMS"
1.4.2.1,57021,"7830.05  TELECOMMUNICATION  CYA",5121,"HK1003-Rev.0E-3",WBS,"57020",,,,,NotStart,,,,,,,,,,,,,,,,,,,"HK1003 -Blackpoint D2 - Rev.0E DD30092021;7000  ELECTRICAL SYSTEMS;7830  COMMUNICATION SYSTEMS"
1.4.3,57017,"7810  LIGHTING + SMALL POWER  BZL",5121,"HK1003-Rev.0E-3",WBS,"56972",,,,100,Complete,,,,,,,,,0,,0,,0,,0,,,,"HK1003 -Blackpoint D2 - Rev.0E DD30092021;7000  ELECTRICAL SYSTEMS"
1.4.3.1,57019,"7810.10  LIGHTING + SMALL POWER for HRSG  BZL",5121,"HK1003-Rev.0E-3",WBS,"57017",,,,,NotStart,,,,,,,,,,,,,,,,,,,"HK1003 -Blackpoint D2 - Rev.0E DD30092021;7000  ELECTRICAL SYSTEMS;7810  LIGHTING + SMALL POWER  BZL"
1.4.3.2,57018,"7810.05  LIGHTING + SMALL POWER in UMC  BZL",5121,"HK1003-Rev.0E-3",WBS,"57017",,,,,NotStart,,,,,,,,,,,,,,,,,,,"HK1003 -Blackpoint D2 - Rev.0E DD30092021;7000  ELECTRICAL SYSTEMS;7810  LIGHTING + SMALL POWER  BZL"
1.4.4,57010,"7790  POWER CONTROL CENTERS  (PCC)  UBA61,63,65,66+81,82",5121,"HK1003-Rev.0E-3",WBS,"56972",,,,100,Complete,,,,,,,,,0,,0,,0,,0,,,,"HK1003 -Blackpoint D2 - Rev.0E DD30092021;7000  ELECTRICAL SYSTEMS"
1.4.4.1,57016,"7790.30  POWER CONTROL CENTER  UBA81",5121,"HK1003-Rev.0E-3",WBS,"57010",,,,,NotStart,,,,,,,,,,,,,,,,,,,"HK1003 -Blackpoint D2 - Rev.0E DD30092021;7000  ELECTRICAL SYSTEMS;7790  POWER CONTROL CENTERS  (PCC)  UBA61,63,65,66+81,82"
1.4.4.2,57015,"7790.20  POWER CONTROL CENTER  UBA66",5121,"HK1003-Rev.0E-3",WBS,"57010",,,,,NotStart,,,,,,,,,,,,,,,,,,,"HK1003 -Blackpoint D2 - Rev.0E DD30092021;7000  ELECTRICAL SYSTEMS;7790  POWER CONTROL CENTERS  (PCC)  UBA61,63,65,66+81,82"
1.4.4.3,57014,"7790.15  POWER CONTROL CENTER  UBA65",5121,"HK1003-Rev.0E-3",WBS,"57010",,,,,NotStart,,,,,,,,,,,,,,,,,,,"HK1003 -Blackpoint D2 - Rev.0E DD30092021;7000  ELECTRICAL SYSTEMS;7790  POWER CONTROL CENTERS  (PCC)  UBA61,63,65,66+81,82"
1.4.4.4,57013,"7790.10  POWER CONTROL CENTER  WITHOUT PLANT SHOP TEST UBA63,65,81,82",5121,"HK1003-Rev.0E-3",WBS,"57010",,,,,NotStart,,,,,,,,,,,,,,,,,,,"HK1003 -Blackpoint D2 - Rev.0E DD30092021;7000  ELECTRICAL SYSTEMS;7790  POWER CONTROL CENTERS  (PCC)  UBA61,63,65,66+81,82"
1.4.4.5,57012,"7790.05  POWER CONTROL CENTER WITH PLANT SHOP TEST UBA61",5121,"HK1003-Rev.0E-3",WBS,"57010",,,,,NotStart,,,,,,,,,,,,,,,,,,,"HK1003 -Blackpoint D2 - Rev.0E DD30092021;7000  ELECTRICAL SYSTEMS;7790  POWER CONTROL CENTERS  (PCC)  UBA61,63,65,66+81,82"
1.4.4.6,57011,"7790.00  ELECTRICAL COMMISSIONING PCC UBA61,63,65,66+81",5121,"HK1003-Rev.0E-3",WBS,"57010",,,,,NotStart,,,,,,,,,,,,,,,,,,,"HK1003 -Blackpoint D2 - Rev.0E DD30092021;7000  ELECTRICAL SYSTEMS;7790  POWER CONTROL CENTERS  (PCC)  UBA61,63,65,66+81,82"
1.4.5,57007,"7770  CABLE SUPPORT STRUCTURES / CABLE TRAYS  BZP",5121,"HK1003-Rev.0E-3",WBS,"56972",,,,100,Complete,,,,,,,,,0,,0,,0,,0,,,,"HK1003 -Blackpoint D2 - Rev.0E DD30092021;7000  ELECTRICAL SYSTEMS"
1.4.5.1,57009,"7770.05  CABLE TRAYS  BZP",5121,"HK1003-Rev.0E-3",WBS,"57007",,,,,NotStart,,,,,,,,,,,,,,,,,,,"HK1003 -Blackpoint D2 - Rev.0E DD30092021;7000  ELECTRICAL SYSTEMS;7770  CABLE SUPPORT STRUCTURES / CABLE TRAYS  BZP"
1.4.5.2,57008,"7770.03  CABLE SUPPORT SYSTEM  BZP",5121,"HK1003-Rev.0E-3",WBS,"57007",,,,,NotStart,,,,,,,,,,,,,,,,,,,"HK1003 -Blackpoint D2 - Rev.0E DD30092021;7000  ELECTRICAL SYSTEMS;7770  CABLE SUPPORT STRUCTURES / CABLE TRAYS  BZP"
1.4.6,57003,"7710  MV, LV CABLES",5121,"HK1003-Rev.0E-3",WBS,"56972",,,,100,Complete,,,,,,,,,0,,0,,0,,0,,,,"HK1003 -Blackpoint D2 - Rev.0E DD30092021;7000  ELECTRICAL SYSTEMS"
1.4.6.1,57006,"7710.10  MV + LV CABLES  BZK",5121,"HK1003-Rev.0E-3",WBS,"57003",,,,,NotStart,,,,,,,,,,,,,,,,,,,"HK1003 -Blackpoint D2 - Rev.0E DD30092021;7000  ELECTRICAL SYSTEMS;7710  MV, LV CABLES"
1.4.6.2,57005,"7710.05  CABLE DESIGN & ROUTING",5121,"HK1003-Rev.0E-3",WBS,"57003",,,,,NotStart,,,,,,,,,,,,,,,,,,,"HK1003 -Blackpoint D2 - Rev.0E DD30092021;7000  ELECTRICAL SYSTEMS;7710  MV, LV CABLES"
1.4.6.3,57004,"7710.00  ELECTRICAL INSTALLATIONS  UMC",5121,"HK1003-Rev.0E-3",WBS,"57003",,,,,NotStart,,,,,,,,,,,,,,,,,,,"HK1003 -Blackpoint D2 - Rev.0E DD30092021;7000  ELECTRICAL SYSTEMS;7710  MV, LV CABLES"
1.4.7,57002,"7600  PROTECTION, SYNCHRON., METERING  CHA/CHY",5121,"HK1003-Rev.0E-3",WBS,"56972",,,,,NotStart,,,,,,,,,,,,,,,,,,,"HK1003 -Blackpoint D2 - Rev.0E DD30092021;7000  ELECTRICAL SYSTEMS"
1.4.8,56999,"7450  LV TRANSFORMERS",5121,"HK1003-Rev.0E-3",WBS,"56972",,,,100,Complete,,,,,,,,,0,,0,,0,,0,,,,"HK1003 -Blackpoint D2 - Rev.0E DD30092021;7000  ELECTRICAL SYSTEMS"
1.4.8.1,57001,"7450.10  SEE/SFC TRANSFORMER / EQUIPMENT  MKC/MBJ/CJT",5121,"HK1003-Rev.0E-3",WBS,"56999",,,,,NotStart,,,,,,,,,,,,,,,,,,,"HK1003 -Blackpoint D2 - Rev.0E DD30092021;7000  ELECTRICAL SYSTEMS;7450  LV TRANSFORMERS"
1.4.8.2,57000,"7450.05  LV TRANSFORMERS  BFT/BHT",5121,"HK1003-Rev.0E-3",WBS,"56999",,,,,NotStart,,,,,,,,,,,,,,,,,,,"HK1003 -Blackpoint D2 - Rev.0E DD30092021;7000  ELECTRICAL SYSTEMS;7450  LV TRANSFORMERS"
1.4.9,56996,"7420  TRANSFORMERS  BAT/BBT",5121,"HK1003-Rev.0E-3",WBS,"56972",,,,100,Complete,,,,,,,,,0,,0,,0,,0,,,,"HK1003 -Blackpoint D2 - Rev.0E DD30092021;7000  ELECTRICAL SYSTEMS"
1.4.9.1,56998,"7420.10  AUXILIARY TRANSFORMER  BBT",5121,"HK1003-Rev.0E-3",WBS,"56996",,,,,NotStart,,,,,,,,,,,,,,,,,,,"HK1003 -Blackpoint D2 - Rev.0E DD30092021;7000  ELECTRICAL SYSTEMS;7420  TRANSFORMERS  BAT/BBT"
1.4.9.2,56997,"7420.05  MAIN TRANSFORMER  BAT/BBT",5121,"HK1003-Rev.0E-3",WBS,"56996",,,,,NotStart,,,,,,,,,,,,,,,,,,,"HK1003 -Blackpoint D2 - Rev.0E DD30092021;7000  ELECTRICAL SYSTEMS;7420  TRANSFORMERS  BAT/BBT"
1.4.10,56994,"7350  DIESEL GENERATOR SET  XK-",5121,"HK1003-Rev.0E-3",WBS,"56972",,,,100,Complete,,,,,,,,,0,,0,,0,,0,,,,"HK1003 -Blackpoint D2 - Rev.0E DD30092021;7000  ELECTRICAL SYSTEMS"
1.4.10.1,56995,"7350.05  EMERGENCY DIESEL GENERATOR SET  XKA",5121,"HK1003-Rev.0E-3",WBS,"56994",,,,,NotStart,,,,,,,,,,,,,,,,,,,"HK1003 -Blackpoint D2 - Rev.0E DD30092021;7000  ELECTRICAL SYSTEMS;7350  DIESEL GENERATOR SET  XK-"
1.4.11,56992,"7340  SEE/SFC",5121,"HK1003-Rev.0E-3",WBS,"56972",,,,100,Complete,,,,,,,,,0,,0,,0,,0,,,,"HK1003 -Blackpoint D2 - Rev.0E DD30092021;7000  ELECTRICAL SYSTEMS"
1.4.11.1,56993,"7340.15  SEE/SFC CUBICLE  CJT",5121,"HK1003-Rev.0E-3",WBS,"56992",,,,,NotStart,,,,,,,,,,,,,,,,,,,"HK1003 -Blackpoint D2 - Rev.0E DD30092021;7000  ELECTRICAL SYSTEMS;7340  SEE/SFC"
1.4.12,56990,"7320  DC/DC CONVERTERS;BATTERY CHARGER  BUK;BTL",5121,"HK1003-Rev.0E-3",WBS,"56972",,,,100,Complete,,,,,,,,,0,,0,,0,,0,,,,"HK1003 -Blackpoint D2 - Rev.0E DD30092021;7000  ELECTRICAL SYSTEMS"
1.4.12.1,56991,"7320.00  INVERTER BRU; DC/DC CONVERTER BUK; BATTERY CHARGER BTL",5121,"HK1003-Rev.0E-3",WBS,"56990",,,,,NotStart,,,,,,,,,,,,,,,,,,,"HK1003 -Blackpoint D2 - Rev.0E DD30092021;7000  ELECTRICAL SYSTEMS;7320  DC/DC CONVERTERS;BATTERY CHARGER  BUK;BTL"
1.4.13,56989,"7310  BATTERIES  BTA",5121,"HK1003-Rev.0E-3",WBS,"56972",,,,,NotStart,,,,,,,,,,,,,,,,,,,"HK1003 -Blackpoint D2 - Rev.0E DD30092021;7000  ELECTRICAL SYSTEMS"
1.4.14,56986,"7230  LV, DC SWITCHGEAR  BFE/BMA; BUB/BUC; BFH; BFJ",5121,"HK1003-Rev.0E-3",WBS,"56972",,,,100,Complete,,,,,,,,,0,,0,,0,,0,,,,"HK1003 -Blackpoint D2 - Rev.0E DD30092021;7000  ELECTRICAL SYSTEMS"
1.4.14.1,56988,"7230.15  LV SWITCHGEAR for PCC UBA81  BFH",5121,"HK1003-Rev.0E-3",WBS,"56986",,,,,NotStart,,,,,,,,,,,,,,,,,,,"HK1003 -Blackpoint D2 - Rev.0E DD30092021;7000  ELECTRICAL SYSTEMS;7230  LV, DC SWITCHGEAR  BFE/BMA; BUB/BUC; BFH; BFJ"
1.4.14.2,56987,"7230.05  LV/DC SWITCHGEAR  BFE/BMA",5121,"HK1003-Rev.0E-3",WBS,"56986",,,,,NotStart,,,,,,,,,,,,,,,,,,,"HK1003 -Blackpoint D2 - Rev.0E DD30092021;7000  ELECTRICAL SYSTEMS;7230  LV, DC SWITCHGEAR  BFE/BMA; BUB/BUC; BFH; BFJ"
1.4.15,56985,"7210  MV SWITCHGEAR  BBE",5121,"HK1003-Rev.0E-3",WBS,"56972",,,,,NotStart,,,,,,,,,,,,,,,,,,,"HK1003 -Blackpoint D2 - Rev.0E DD30092021;7000  ELECTRICAL SYSTEMS"
1.4.16,56982,"7190  GROUNDING  BAW",5121,"HK1003-Rev.0E-3",WBS,"56972",,,,100,Complete,,,,,,,,,0,,0,,0,,0,,,,"HK1003 -Blackpoint D2 - Rev.0E DD30092021;7000  ELECTRICAL SYSTEMS"
1.4.16.1,56984,"7190.10  OVERALL LIGHTNING PROTECTION  BAW",5121,"HK1003-Rev.0E-3",WBS,"56982",,,,,NotStart,,,,,,,,,,,,,,,,,,,"HK1003 -Blackpoint D2 - Rev.0E DD30092021;7000  ELECTRICAL SYSTEMS;7190  GROUNDING  BAW"
1.4.16.2,56983,"7190.05  IN- & OUTDOOR GROUNDING  BAW",5121,"HK1003-Rev.0E-3",WBS,"56982",,,,,NotStart,,,,,,,,,,,,,,,,,,,"HK1003 -Blackpoint D2 - Rev.0E DD30092021;7000  ELECTRICAL SYSTEMS;7190  GROUNDING  BAW"
1.4.17,56981,"7153  GENERATOR CIRCUIT BREAKER  BAC",5121,"HK1003-Rev.0E-3",WBS,"56972",,,,,NotStart,,,,,,,,,,,,,,,,,,,"HK1003 -Blackpoint D2 - Rev.0E DD30092021;7000  ELECTRICAL SYSTEMS"
1.4.18,56980,"7150  GENERATOR ISOLATED PHASE BUSDUCT  BAA",5121,"HK1003-Rev.0E-3",WBS,"56972",,,,,NotStart,,,,,,,,,,,,,,,,,,,"HK1003 -Blackpoint D2 - Rev.0E DD30092021;7000  ELECTRICAL SYSTEMS"
1.4.19,56979,"7110  HV SWITCHGEAR  ACA",5121,"HK1003-Rev.0E-3",WBS,"56972",,,,,NotStart,,,,,,,,,,,,,,,,,,,"HK1003 -Blackpoint D2 - Rev.0E DD30092021;7000  ELECTRICAL SYSTEMS"
1.4.20,56973,"7000  GENERAL ELECTRICAL ENGINEERING",5121,"HK1003-Rev.0E-3",WBS,"56972",,,,100,Complete,,,,,,,,,0,,0,,0,,0,,,,"HK1003 -Blackpoint D2 - Rev.0E DD30092021;7000  ELECTRICAL SYSTEMS"
1.4.20.1,56978,"7000.15  BLACK BOX SPECIFICATION",5121,"HK1003-Rev.0E-3",WBS,"56973",,,,,NotStart,,,,,,,,,,,,,,,,,,,"HK1003 -Blackpoint D2 - Rev.0E DD30092021;7000  ELECTRICAL SYSTEMS;7000  GENERAL ELECTRICAL ENGINEERING"
1.4.20.2,56977,"7000.10  SINGLE LINE DIAGRAM",5121,"HK1003-Rev.0E-3",WBS,"56973",,,,,NotStart,,,,,,,,,,,,,,,,,,,"HK1003 -Blackpoint D2 - Rev.0E DD30092021;7000  ELECTRICAL SYSTEMS;7000  GENERAL ELECTRICAL ENGINEERING"
1.4.20.3,56976,"7000.05  ELECTRICAL CONSUMER LIST (VEL)",5121,"HK1003-Rev.0E-3",WBS,"56973",,,,,NotStart,,,,,,,,,,,,,,,,,,,"HK1003 -Blackpoint D2 - Rev.0E DD30092021;7000  ELECTRICAL SYSTEMS;7000  GENERAL ELECTRICAL ENGINEERING"
1.4.20.4,56975,"7000.03  DELIVERY ELECTRICAL MILESTONES (ET..)",5121,"HK1003-Rev.0E-3",WBS,"56973",,,,,NotStart,,,,,,,,,,,,,,,,,,,"HK1003 -Blackpoint D2 - Rev.0E DD30092021;7000  ELECTRICAL SYSTEMS;7000  GENERAL ELECTRICAL ENGINEERING"
1.4.20.5,56974,"7000.00  ELECTRICAL ENGINEERING",5121,"HK1003-Rev.0E-3",WBS,"56973",,,,,NotStart,,,,,,,,,,,,,,,,,,,"HK1003 -Blackpoint D2 - Rev.0E DD30092021;7000  ELECTRICAL SYSTEMS;7000  GENERAL ELECTRICAL ENGINEERING"
1.5,56819,"6000  BUILDING + STRUCTURES",5121,"HK1003-Rev.0E-3",WBS,"55902",,,,,Active,17/06/2021,17/06/2021,01/09/2022,,,,,,45,45,108,,10,10,25,,,,"HK1003 -Blackpoint D2 - Rev.0E DD30092021"
1.5-1,SI20UMX2-76,"BASIC BUILDING DESIGN INCL. 3D MODEL 20UMX02",5121,"HK1003-Rev.0E-3",TT_Task,"56819",-,-,-,100,TK_Complete,18/06/2021,18/06/2021,22/07/2021,22/07/2021,"SI20UMX2-60 FS","SI20UMX2-60","SI20UMX2-70 FS","SI20UMX2-70",45,45,50,50,10,10,11,11,18,,"HK1003 -Blackpoint D2 - Rev.0E DD30092021;6000  BUILDING + STRUCTURES"
1.5-2,SI20UMX2-50,"PREPARATION FOUNDATION GROUNDING DWGS 20UMX02",5121,"HK1003-Rev.0E-3",TT_Task,"56819",-,-,-,100,TK_Complete,23/08/2021,23/08/2021,05/09/2021,05/09/2021,"SI20UMX2-70 FF","SI20UMX2-70","SI20UMX2-75 FF,SI20UMX2-80 FS","SI20UMX2-75,SI20UMX2-80",55,55,57,57,12,12,13,13,27,,"HK1003 -Blackpoint D2 - Rev.0E DD30092021;6000  BUILDING + STRUCTURES"
1.5-3,SI20UMX2-75,"(F) CONCRETE STRUCTURE DWGS ON SITE RELEASED FOR EXECUTION 20UMX02",5121,"HK1003-Rev.0E-3",TT_FinMile,"56819",-,-,-,0,TK_NotStart,25/03/2022,,25/03/2022,,"SI20UMX2-50 FF,SI20UMX2-70 FS,SI20UMX2-84 FS","SI20UMX2-50,SI20UMX2-70,SI20UMX2-84","SI20UMX5-06 FS","SI20UMX5-06",85,,85,,20,,20,,54,1072,"HK1003 -Blackpoint D2 - Rev.0E DD30092021;6000  BUILDING + STRUCTURES"
1.5-4,SI20UMX2-70,"DETAIL DESIGN CONCRETE STRUCTURE  20UMX02",5121,"HK1003-Rev.0E-3",TT_Task,"56819",-,-,-,100,TK_Complete,23/07/2021,23/07/2021,05/09/2021,05/09/2021,"SI20UMX2-76 FS,SI20UMX2-60 FS,SI--UE2-E38 FS","SI20UMX2-76,SI20UMX2-60,SI--UE2-E38","SI20UMX2-50 FF,SI20UMX2-75 FS,SI20UMX2-80 FS","SI20UMX2-50,SI20UMX2-75,SI20UMX2-80",50,50,57,57,11,11,13,13,22,,"HK1003 -Blackpoint D2 - Rev.0E DD30092021;6000  BUILDING + STRUCTURES"
1.5-5,SI20UMX2-60,"(MS3) CONCRETE STRUCTURE FINAL DIMENSIONS, LOADS AVAILABLE 20UMX02",5121,"HK1003-Rev.0E-3",TT_FinMile,"56819",-,-,-,100,TK_Complete,17/06/2021,17/06/2021,17/06/2021,17/06/2021,"CLP20UMX2-77 FS,SI20MBV2-89 FS","CLP20UMX2-77,SI20MBV2-89","SI20UMX2-76 FS,SI20UMX2-70 FS,SI20UMX2J60 FS","SI20UMX2-76,SI20UMX2-70,SI20UMX2J60",45,45,45,45,10,10,10,10,17,,"HK1003 -Blackpoint D2 - Rev.0E DD30092021;6000  BUILDING + STRUCTURES"
1.5-6,SI20UMX5-12,"(RFE) FOUNDATION 20UMX02",5121,"HK1003-Rev.0E-3",TT_FinMile,"56819",-,-,-,0,TK_NotStart,23/06/2022,,23/06/2022,,"SI20UMX5-18 FS","SI20UMX5-18","SI20MBV6-55 FS,SI20UMX5B12 FS","SI20MBV6-55,SI20UMX5B12",98,,98,,23,,23,,70,1072,"HK1003 -Blackpoint D2 - Rev.0E DD30092021;6000  BUILDING + STRUCTURES"
1.5-7,SI20UMX5-18,"CONSTRUCTION FOUNDATION 20UMX02",5121,"HK1003-Rev.0E-3",TT_Task,"56819",-,-,-,0,TK_NotStart,09/04/2022,,23/06/2022,,"SI20UMX5-11 FS","SI20UMX5-11","SI20UMX5-12 FS","SI20UMX5-12",88,,98,,20,,23,,57,1072,"HK1003 -Blackpoint D2 - Rev.0E DD30092021;6000  BUILDING + STRUCTURES"
1.5-8,SI20UMX5-11,"(H) START PLACING FORMWORK 20UMX02",5121,"HK1003-Rev.0E-3",TT_Mile,"56819",-,-,-,0,TK_NotStart,09/04/2022,,09/04/2022,,"SI20UMX5-06 FS,SI20UMX2-107 FS","SI20UMX5-06,SI20UMX2-107","SI20UMX5-18 FS","SI20UMX5-18",88,,88,,20,,20,,57,1072,"HK1003 -Blackpoint D2 - Rev.0E DD30092021;6000  BUILDING + STRUCTURES"
1.5-9,SI20UMX5-06,"WORK PREPARATION, EXCAVATION 20UMX02",5121,"HK1003-Rev.0E-3",TT_Task,"56819",-,-,-,0,TK_NotStart,26/03/2022,,08/04/2022,,"SI20UMX2-75 FS,SI20UEY5-06 FS,SI20UEY5-15 SS,SI-----5-21& FS,SI-----5-20 FS,SI-P222-84 FS,SI20UMX2-106 FS","SI20UMX2-75,SI20UEY5-06,SI20UEY5-15,SI-----5-21&,SI-----5-20,SI-P222-84,SI20UMX2-106","SI20UMX5-11 FS,SI20UBH5-23 SS,SI-P222-131# FF,SI-P222-131# SS","SI20UMX5-11,SI20UBH5-23,SI-P222-131#,SI-P222-131#",86,,87,,20,,20,,54,1072,"HK1003 -Blackpoint D2 - Rev.0E DD30092021;6000  BUILDING + STRUCTURES"
1.5-10,CLP20UMX2-77,"CUSTOMER INPUT FOR CIVIL DESIGN AVAILABLE 20UMX02",5121,"HK1003-Rev.0E-3",TT_FinMile,"56819",-,-,-,100,TK_Complete,17/06/2021,17/06/2021,17/06/2021,17/06/2021,"SI-----1-05 FS","SI-----1-05","SI20UMX2-60 FS","SI20UMX2-60",45,45,45,45,10,10,10,10,17,,"HK1003 -Blackpoint D2 - Rev.0E DD30092021;6000  BUILDING + STRUCTURES"
1.5-11,SI20UEX2-15,"BASIC BUILDING DESIGN INCL. 3D MODEL 20UEX01",5121,"HK1003-Rev.0E-3",TT_Task,"56819",-,-,-,0,TK_NotStart,13/10/2021,,02/11/2021,,"SI20UEX2-10 FS","SI20UEX2-10","SI20UEX2-20 FS","SI20UEX2-20",62,,65,,14,,15,,34,2240,"HK1003 -Blackpoint D2 - Rev.0E DD30092021;6000  BUILDING + STRUCTURES"
1.5-12,SI20UEX2-25,"PREPARATION FOUNDATION GROUNDING DWGS 20UEX01",5121,"HK1003-Rev.0E-3",TT_Task,"56819",-,-,-,0,TK_NotStart,27/11/2021,,10/12/2021,,"SI20UEX2-108 FF","SI20UEX2-108","SI20UEX2-70 FF,SI20UEX2-40 FS","SI20UEX2-70,SI20UEX2-40",69,,70,,16,,16,,39,552,"HK1003 -Blackpoint D2 - Rev.0E DD30092021;6000  BUILDING + STRUCTURES"
1.5-13,SI20UEX2-70,"(F) CONCRETE STRUCTURE DWGS ON SITE RELEASED FOR EXECUTION 20UEX01",5121,"HK1003-Rev.0E-3",TT_FinMile,"56819",-,-,-,0,TK_NotStart,30/06/2022,,30/06/2022,,"SI20UEX2-25 FF,SI20UEX2-20 FS,SI20UEX2-50 FS","SI20UEX2-25,SI20UEX2-20,SI20UEX2-50","SI20UEX2-75 FS","SI20UEX2-75",99,,99,,23,,23,,72,736,"HK1003 -Blackpoint D2 - Rev.0E DD30092021;6000  BUILDING + STRUCTURES"
1.5-14,SI20UEX2-20,"DETAIL DESIGN CONCRETE STRUCTURE 20UEX01",5121,"HK1003-Rev.0E-3",TT_Task,"56819",-,-,-,0,TK_NotStart,03/11/2021,,17/12/2021,,"SI20UEX2-15 FS,SI20UEX2-10 FS","SI20UEX2-15,SI20UEX2-10","SI20UEX2-70 FS,SI20UEX2-5 FF","SI20UEX2-70,SI20UEX2-5",65,,71,,15,,16,,37,2240,"HK1003 -Blackpoint D2 - Rev.0E DD30092021;6000  BUILDING + STRUCTURES"
1.5-15,SI20UEX2-10,"(MS3) CONCRETE STRUCTURE FINAL DIMENSIONS, LOADS AVAILABLE 20UEX01",5121,"HK1003-Rev.0E-3",TT_FinMile,"56819",-,-,-,0,TK_NotStart,13/10/2021,,13/10/2021,,"SI20EGx2-30 FS","SI20EGx2-30","SI20UEX2-15 FS,SI20UEX2-20 FS,SI20UEX2J60 FS","SI20UEX2-15,SI20UEX2-20,SI20UEX2J60",62,,62,,14,,14,,34,1200,"HK1003 -Blackpoint D2 - Rev.0E DD30092021;6000  BUILDING + STRUCTURES"
1.5-16,SI20UEX2-100,"(RFE) FOUNDATION 20UEX01",5121,"HK1003-Rev.0E-3",TT_FinMile,"56819",-,-,-,0,TK_NotStart,28/07/2022,,28/07/2022,,"SI20UEX2-80 FS","SI20UEX2-80","SI20EGx6-65 FS,SI20UEX2-55 FS,SI20UEX5B12 FS,SI20UEX2-95 FS","SI20EGx6-65,SI20UEX2-55,SI20UEX5B12,SI20UEX2-95",103,,103,,24,,24,,75,848,"HK1003 -Blackpoint D2 - Rev.0E DD30092021;6000  BUILDING + STRUCTURES"
1.5-17,SI20UEX2-80,"CONSTRUCTION FOUNDATION 20UEX01",5121,"HK1003-Rev.0E-3",TT_Task,"56819",-,-,-,0,TK_NotStart,15/07/2022,,28/07/2022,,"SI20UEX2-85 FS","SI20UEX2-85","SI20UEX2-100 FS,SI20UEX2-90 FS","SI20UEX2-100,SI20UEX2-90",101,,103,,23,,24,,73,736,"HK1003 -Blackpoint D2 - Rev.0E DD30092021;6000  BUILDING + STRUCTURES"
1.5-18,SI20UEX2-85,"(H) START PLACING FORMWORK 20UEX01",5121,"HK1003-Rev.0E-3",TT_Mile,"56819",-,-,-,0,TK_NotStart,15/07/2022,,15/07/2022,,"SI20UEX2-75 FS,SI20UEX2-111 FS","SI20UEX2-75,SI20UEX2-111","SI20UEX2-80 FS","SI20UEX2-80",101,,101,,23,,23,,73,736,"HK1003 -Blackpoint D2 - Rev.0E DD30092021;6000  BUILDING + STRUCTURES"
1.5-19,SI20UEX2-75,"WORK PREPARATION, EXCAVATION 20UEX01",5121,"HK1003-Rev.0E-3",TT_Task,"56819",-,-,-,0,TK_NotStart,01/07/2022,,14/07/2022,,"SI20UEX2-70 FS,SI20UBZ5-68 FS,SI-----5-21& FS,SI-----5-20 FS,SI-P222-84 FS,SI20UEX2-110 FS,SI20UBN5-5 SS","SI20UEX2-70,SI20UBZ5-68,SI-----5-21&,SI-----5-20,SI-P222-84,SI20UEX2-110,SI20UBN5-5","SI20UEX2-85 FS,SI-P222-131# FF,SI-P222-131# SS","SI20UEX2-85,SI-P222-131#,SI-P222-131#",99,,101,,23,,23,,72,736,"HK1003 -Blackpoint D2 - Rev.0E DD30092021;6000  BUILDING + STRUCTURES"
1.5-20,SI20UEX2-90,"CONSTRUCTION WALLS 20UEX01",5121,"HK1003-Rev.0E-3",TT_Task,"56819",-,-,-,0,TK_NotStart,29/07/2022,,11/08/2022,,"SI20UEX2-80 FS","SI20UEX2-80","SI20UEX2-95 FS","SI20UEX2-95",103,,105,,24,,24,,76,736,"HK1003 -Blackpoint D2 - Rev.0E DD30092021;6000  BUILDING + STRUCTURES"
1.5-21,SI20UEX2-95,"CONSTRUCTION ROOF 20UEX01",5121,"HK1003-Rev.0E-3",TT_Task,"56819",-,-,-,0,TK_NotStart,12/08/2022,,01/09/2022,,"SI20UEX2-90 FS,SI20UEX2-100 FS","SI20UEX2-90,SI20UEX2-100","SI20UEX2-106 FS","SI20UEX2-106",105,,108,,24,,25,,77,736,"HK1003 -Blackpoint D2 - Rev.0E DD30092021;6000  BUILDING + STRUCTURES"
1.5-22,SI20UEX2-106,"(RFE) ROOF 20UEX01",5121,"HK1003-Rev.0E-3",TT_FinMile,"56819",-,-,-,0,TK_NotStart,01/09/2022,,01/09/2022,,"SI20UEX2-95 FS","SI20UEX2-95","SI20UEX5B12 FS","SI20UEX5B12",108,,108,,25,,25,,80,736,"HK1003 -Blackpoint D2 - Rev.0E DD30092021;6000  BUILDING + STRUCTURES"
1.5-23,SI20UEX2-107,"BASIC BUILDING DESIGN INCL. 3D MODEL - PRELIMINARY 20UEX01",5121,"HK1003-Rev.0E-3",TT_Task,"56819",-,-,-,0,TK_NotStart,06/10/2021,,26/10/2021,,"SI20UBN2-106 SS","SI20UBN2-106","SI20UEX2-108 FS","SI20UEX2-108",61,,64,,14,,15,,32,552,"HK1003 -Blackpoint D2 - Rev.0E DD30092021;6000  BUILDING + STRUCTURES"
1.5-24,SI20UEX2-108,"DETAIL DESIGN CONCRETE STRUCTURE - PRELIMINARY 20UEX01",5121,"HK1003-Rev.0E-3",TT_Task,"56819",-,-,-,0,TK_NotStart,27/10/2021,,10/12/2021,,"SI20UEX2-107 FS","SI20UEX2-107","SI20UEX2-25 FF","SI20UEX2-25",64,,70,,15,,16,,36,552,"HK1003 -Blackpoint D2 - Rev.0E DD30092021;6000  BUILDING + STRUCTURES"
1.5-25,SI20UEX2-110,"DETAIL DESIGN BARBENDING STRUCTURE 20UEX01",5121,"HK1003-Rev.0E-3",TT_Task,"56819",-,-,-,0,TK_NotStart,22/04/2022,,12/05/2022,,"SI20UEX2-45 FS","SI20UEX2-45","SI20UEX2-75 FS","SI20UEX2-75",89,,92,,20,,21,,59,1128,"HK1003 -Blackpoint D2 - Rev.0E DD30092021;6000  BUILDING + STRUCTURES"
1.5-26,SI20UEX2-111,"BD - BA10 COMMENCEMENT OF WORK CONCRETE 20UEX01",5121,"HK1003-Rev.0E-3",TT_FinMile,"56819",-,-,-,0,TK_NotStart,29/03/2022,,29/03/2022,,"SI20UEX2-50 FS","SI20UEX2-50","SI20UEX2-85 FS","SI20UEX2-85",86,,86,,20,,20,,54,1592,"HK1003 -Blackpoint D2 - Rev.0E DD30092021;6000  BUILDING + STRUCTURES"
1.5-27,SI20UMX2-106,"DETAIL DESIGN BARBENDING STRUCTURE  20UMX02",5121,"HK1003-Rev.0E-3",TT_Task,"56819",-,-,-,0,TK_NotStart,09/12/2021,,29/12/2021,,"SI20UMX2-82 FS","SI20UMX2-82","SI20UMX5-06 FS","SI20UMX5-06",70,,73,,16,,17,,42,1760,"HK1003 -Blackpoint D2 - Rev.0E DD30092021;6000  BUILDING + STRUCTURES"
1.5-28,SI20UMX2-107,"BD - BA10 COMMENCEMENT OF WORK CONCRETE 20UMX02",5121,"HK1003-Rev.0E-3",TT_FinMile,"56819",-,-,-,0,TK_NotStart,12/01/2022,,12/01/2022,,"SI20UMX2-84 FS","SI20UMX2-84","SI20UMX5-11 FS","SI20UMX5-11",75,,75,,17,,17,,45,1760,"HK1003 -Blackpoint D2 - Rev.0E DD30092021;6000  BUILDING + STRUCTURES"
1.5.1,56966,"6450  SUPPLEMENTARY STRUCTURE + YARD",5121,"HK1003-Rev.0E-3",WBS,"56819",,,,100,Complete,,,,,,,,,0,,0,,0,,0,,,,"HK1003 -Blackpoint D2 - Rev.0E DD30092021;6000  BUILDING + STRUCTURES"
1.5.1.1,56971,"6450.10  ROADS + DRAINAGES  UZA",5121,"HK1003-Rev.0E-3",WBS,"56966",,,,,NotStart,,,,,,,,,,,,,,,,,,,"HK1003 -Blackpoint D2 - Rev.0E DD30092021;6000  BUILDING + STRUCTURES;6450  SUPPLEMENTARY STRUCTURE + YARD"
1.5.1.2,56967,"6450.05  GATE HOUSE  UYE",5121,"HK1003-Rev.0E-3",WBS,"56966",,,,100,Complete,,,,,,,,,0,,0,,0,,0,,,,"HK1003 -Blackpoint D2 - Rev.0E DD30092021;6000  BUILDING + STRUCTURES;6450  SUPPLEMENTARY STRUCTURE + YARD"
1.5.1.2.1,56970,"6450.05.15  MASONRY/FINISHING WORKS GATE HOUSE  UYE",5121,"HK1003-Rev.0E-3",WBS,"56967",,,,,NotStart,,,,,,,,,,,,,,,,,,,"HK1003 -Blackpoint D2 - Rev.0E DD30092021;6000  BUILDING + STRUCTURES;6450  SUPPLEMENTARY STRUCTURE + YARD;6450.05  GATE HOUSE  UYE"
1.5.1.2.2,56969,"6450.05.10  FINISHING WORKS GATE HOUSE  UYE",5121,"HK1003-Rev.0E-3",WBS,"56967",,,,,NotStart,,,,,,,,,,,,,,,,,,,"HK1003 -Blackpoint D2 - Rev.0E DD30092021;6000  BUILDING + STRUCTURES;6450  SUPPLEMENTARY STRUCTURE + YARD;6450.05  GATE HOUSE  UYE"
1.5.1.2.3,56968,"6450.05.05  CONCRETE STRUCTURE GATE HOUSE  UYE",5121,"HK1003-Rev.0E-3",WBS,"56967",,,,,NotStart,,,,,,,,,,,,,,,,,,,"HK1003 -Blackpoint D2 - Rev.0E DD30092021;6000  BUILDING + STRUCTURES;6450  SUPPLEMENTARY STRUCTURE + YARD;6450.05  GATE HOUSE  UYE"
1.5.2,56961,"6410  BRIDGE + DUCTING STRUCTURE  UMY",5121,"HK1003-Rev.0E-3",WBS,"56819",,,,100,Complete,,,,,,,,,0,,0,,0,,0,,,,"HK1003 -Blackpoint D2 - Rev.0E DD30092021;6000  BUILDING + STRUCTURES"
1.5.2.1,56962,"6410.05  PIPE + CABLE BRIDGE STRUCTURE  UMY",5121,"HK1003-Rev.0E-3",WBS,"56961",,,,100,Complete,,,,,,,,,0,,0,,0,,0,,,,"HK1003 -Blackpoint D2 - Rev.0E DD30092021;6000  BUILDING + STRUCTURES;6410  BRIDGE + DUCTING STRUCTURE  UMY"
1.5.2.1.1,56965,"6410.05.15  CLADDING PIPE BRIDGE  UMY",5121,"HK1003-Rev.0E-3",WBS,"56962",,,,,NotStart,,,,,,,,,,,,,,,,,,,"HK1003 -Blackpoint D2 - Rev.0E DD30092021;6000  BUILDING + STRUCTURES;6410  BRIDGE + DUCTING STRUCTURE  UMY;6410.05  PIPE + CABLE BRIDGE STRUCTURE  UMY"
1.5.2.1.2,56964,"6410.05.10  STEEL STRUCTURE PIPE BRIDGE  UMY",5121,"HK1003-Rev.0E-3",WBS,"56962",,,,,NotStart,,,,,,,,,,,,,,,,,,,"HK1003 -Blackpoint D2 - Rev.0E DD30092021;6000  BUILDING + STRUCTURES;6410  BRIDGE + DUCTING STRUCTURE  UMY;6410.05  PIPE + CABLE BRIDGE STRUCTURE  UMY"
1.5.2.1.3,56963,"6410.05.05  FOUNDATION PIPE BRIDGE  UMY",5121,"HK1003-Rev.0E-3",WBS,"56962",,,,,NotStart,,,,,,,,,,,,,,,,,,,"HK1003 -Blackpoint D2 - Rev.0E DD30092021;6000  BUILDING + STRUCTURES;6410  BRIDGE + DUCTING STRUCTURE  UMY;6410.05  PIPE + CABLE BRIDGE STRUCTURE  UMY"
1.5.3,56958,"6390  STRUCTURES FOR AUXILIARY SYSTEMS  UT-",5121,"HK1003-Rev.0E-3",WBS,"56819",,,,100,Complete,,,,,,,,,0,,0,,0,,0,,,,"HK1003 -Blackpoint D2 - Rev.0E DD30092021;6000  BUILDING + STRUCTURES"
1.5.3.1,56960,"6390.10   FENCING/FINISHING WORKS IGNITION GAS TANK  UTX",5121,"HK1003-Rev.0E-3",WBS,"56958",,,,,NotStart,,,,,,,,,,,,,,,,,,,"HK1003 -Blackpoint D2 - Rev.0E DD30092021;6000  BUILDING + STRUCTURES;6390  STRUCTURES FOR AUXILIARY SYSTEMS  UT-"
1.5.3.2,56959,"6390.05  FOUNDATION IGNITION GAS TANK  UTX",5121,"HK1003-Rev.0E-3",WBS,"56958",,,,,NotStart,,,,,,,,,,,,,,,,,,,"HK1003 -Blackpoint D2 - Rev.0E DD30092021;6000  BUILDING + STRUCTURES;6390  STRUCTURES FOR AUXILIARY SYSTEMS  UT-"
1.5.4,56951,"6380  STRUCTURES FOR SUPPORTING SYSTEMS  US-",5121,"HK1003-Rev.0E-3",WBS,"56819",,,,100,Complete,,,,,,,,,0,,0,,0,,0,,,,"HK1003 -Blackpoint D2 - Rev.0E DD30092021;6000  BUILDING + STRUCTURES"
1.5.4.1,56957,"6380.30  FOUNDATION SPACE HEATING USB",5121,"HK1003-Rev.0E-3",WBS,"56951",,,,,NotStart,,,,,,,,,,,,,,,,,,,"HK1003 -Blackpoint D2 - Rev.0E DD30092021;6000  BUILDING + STRUCTURES;6380  STRUCTURES FOR SUPPORTING SYSTEMS  US-"
1.5.4.2,56956,"6380.25   FENCING/FINISHING WORKS CHEMICAL STORAGE USX",5121,"HK1003-Rev.0E-3",WBS,"56951",,,,,NotStart,,,,,,,,,,,,,,,,,,,"HK1003 -Blackpoint D2 - Rev.0E DD30092021;6000  BUILDING + STRUCTURES;6380  STRUCTURES FOR SUPPORTING SYSTEMS  US-"
1.5.4.3,56955,"6380.20  FOUNDATION CHEMICAL STORAGE USX",5121,"HK1003-Rev.0E-3",WBS,"56951",,,,,NotStart,,,,,,,,,,,,,,,,,,,"HK1003 -Blackpoint D2 - Rev.0E DD30092021;6000  BUILDING + STRUCTURES;6380  STRUCTURES FOR SUPPORTING SYSTEMS  US-"
1.5.4.4,56954,"6380.15  FOUNDATION FOR LABORATORY  USV",5121,"HK1003-Rev.0E-3",WBS,"56951",,,,,NotStart,,,,,,,,,,,,,,,,,,,"HK1003 -Blackpoint D2 - Rev.0E DD30092021;6000  BUILDING + STRUCTURES;6380  STRUCTURES FOR SUPPORTING SYSTEMS  US-"
1.5.4.5,56953,"6380.10  FOUNDATION FIRE FIGHTING PUMP CONTAINER  USG",5121,"HK1003-Rev.0E-3",WBS,"56951",,,,,NotStart,,,,,,,,,,,,,,,,,,,"HK1003 -Blackpoint D2 - Rev.0E DD30092021;6000  BUILDING + STRUCTURES;6380  STRUCTURES FOR SUPPORTING SYSTEMS  US-"
1.5.4.6,56952,"6380.05  FOUNDATION  HVAC SYSTEMS  USA",5121,"HK1003-Rev.0E-3",WBS,"56951",,,,,NotStart,,,,,,,,,,,,,,,,,,,"HK1003 -Blackpoint D2 - Rev.0E DD30092021;6000  BUILDING + STRUCTURES;6380  STRUCTURES FOR SUPPORTING SYSTEMS  US-"
1.5.5,56942,"6350  STRUCTURES FOR COOLING WATER SYSTEMS  UR-",5121,"HK1003-Rev.0E-3",WBS,"56819",,,,100,Complete,,,,,,,,,0,,0,,0,,0,,,,"HK1003 -Blackpoint D2 - Rev.0E DD30092021;6000  BUILDING + STRUCTURES"
1.5.5.1,56948,"6350.20  COOLING TOWER PUMP BUILDING  URD",5121,"HK1003-Rev.0E-3",WBS,"56942",,,,100,Complete,,,,,,,,,0,,0,,0,,0,,,,"HK1003 -Blackpoint D2 - Rev.0E DD30092021;6000  BUILDING + STRUCTURES;6350  STRUCTURES FOR COOLING WATER SYSTEMS  UR-"
1.5.5.1.1,56950,"6350.20.10  STEEL STRUCTURE COOLING TOWER PUMP BUILDING  URD",5121,"HK1003-Rev.0E-3",WBS,"56948",,,,,NotStart,,,,,,,,,,,,,,,,,,,"HK1003 -Blackpoint D2 - Rev.0E DD30092021;6000  BUILDING + STRUCTURES;6350  STRUCTURES FOR COOLING WATER SYSTEMS  UR-;6350.20  COOLING TOWER PUMP BUILDING  URD"
1.5.5.1.2,56949,"6350.20.05  CONCRETE STRUCTURE COOLING TOWER PUMP BUILDING  URD",5121,"HK1003-Rev.0E-3",WBS,"56948",,,,,NotStart,,,,,,,,,,,,,,,,,,,"HK1003 -Blackpoint D2 - Rev.0E DD30092021;6000  BUILDING + STRUCTURES;6350  STRUCTURES FOR COOLING WATER SYSTEMS  UR-;6350.20  COOLING TOWER PUMP BUILDING  URD"
1.5.5.2,56947,"6350.15  CONCRETE STRUCTURE COOLING TOWER RETURN CULVERT  URL",5121,"HK1003-Rev.0E-3",WBS,"56942",,,,,NotStart,,,,,,,,,,,,,,,,,,,"HK1003 -Blackpoint D2 - Rev.0E DD30092021;6000  BUILDING + STRUCTURES;6350  STRUCTURES FOR COOLING WATER SYSTEMS  UR-"
1.5.5.3,56944,"6350.10  COOLING TOWER  URA",5121,"HK1003-Rev.0E-3",WBS,"56942",,,,100,Complete,,,,,,,,,0,,0,,0,,0,,,,"HK1003 -Blackpoint D2 - Rev.0E DD30092021;6000  BUILDING + STRUCTURES;6350  STRUCTURES FOR COOLING WATER SYSTEMS  UR-"
1.5.5.3.1,56946,"6350.10.10  STEEL STRUCTURE FOR COOLING TOWER  URA",5121,"HK1003-Rev.0E-3",WBS,"56944",,,,,NotStart,,,,,,,,,,,,,,,,,,,"HK1003 -Blackpoint D2 - Rev.0E DD30092021;6000  BUILDING + STRUCTURES;6350  STRUCTURES FOR COOLING WATER SYSTEMS  UR-;6350.10  COOLING TOWER  URA"
1.5.5.3.2,56945,"6350.10.05  CONCRETE STRUCTURE FOR COOLING TOWER  URA",5121,"HK1003-Rev.0E-3",WBS,"56944",,,,,NotStart,,,,,,,,,,,,,,,,,,,"HK1003 -Blackpoint D2 - Rev.0E DD30092021;6000  BUILDING + STRUCTURES;6350  STRUCTURES FOR COOLING WATER SYSTEMS  UR-;6350.10  COOLING TOWER  URA"
1.5.5.4,56943,"6350.05  PILING DESIGN COOLING TOWER AREA",5121,"HK1003-Rev.0E-3",WBS,"56942",,,,,NotStart,,,,,,,,,,,,,,,,,,,"HK1003 -Blackpoint D2 - Rev.0E DD30092021;6000  BUILDING + STRUCTURES;6350  STRUCTURES FOR COOLING WATER SYSTEMS  UR-"
1.5.6,56939,"6330  CIRCULATING WATER PIPING SYSTEM (UNDERGROUND)  PAB",5121,"HK1003-Rev.0E-3",WBS,"56819",,,,100,Complete,,,,,,,,,0,,0,,0,,0,,,,"HK1003 -Blackpoint D2 - Rev.0E DD30092021;6000  BUILDING + STRUCTURES"
1.5.6.1,56941,"6330.10  CIRCULATING WATER PIPING SYSTEM (UNDERGROUND)  PAB",5121,"HK1003-Rev.0E-3",WBS,"56939",,,,,NotStart,,,,,,,,,,,,,,,,,,,"HK1003 -Blackpoint D2 - Rev.0E DD30092021;6000  BUILDING + STRUCTURES;6330  CIRCULATING WATER PIPING SYSTEM (UNDERGROUND)  PAB"
1.5.6.2,56940,"6330.05  TEMPORARY W. CIRCULATING WAT.PIPING SYS. (UNDERGROUND)  PAB",5121,"HK1003-Rev.0E-3",WBS,"56939",,,,,NotStart,,,,,,,,,,,,,,,,,,,"HK1003 -Blackpoint D2 - Rev.0E DD30092021;6000  BUILDING + STRUCTURES;6330  CIRCULATING WATER PIPING SYSTEM (UNDERGROUND)  PAB"
1.5.7,56922,"6290  STRUCTURES FOR MAIN MACHINE SETS  UM-",5121,"HK1003-Rev.0E-3",WBS,"56819",,,,100,Complete,,,,,,,,,0,,0,,0,,0,,,,"HK1003 -Blackpoint D2 - Rev.0E DD30092021;6000  BUILDING + STRUCTURES"
1.5.7.1,56935,"6290.15  STRUCTURE FOR EXHAUST GAS DIFFUSER  UMX",5121,"HK1003-Rev.0E-3",WBS,"56922",,,,100,Complete,,,,,,,,,0,,0,,0,,0,,,,"HK1003 -Blackpoint D2 - Rev.0E DD30092021;6000  BUILDING + STRUCTURES;6290  STRUCTURES FOR MAIN MACHINE SETS  UM-"
1.5.7.1.1,56938,"6290.15.15  CLADDING EXHAUST GAS DIFFUSER  UMX",5121,"HK1003-Rev.0E-3",WBS,"56935",,,,,NotStart,,,,,,,,,,,,,,,,,,,"HK1003 -Blackpoint D2 - Rev.0E DD30092021;6000  BUILDING + STRUCTURES;6290  STRUCTURES FOR MAIN MACHINE SETS  UM-;6290.15  STRUCTURE FOR EXHAUST GAS DIFFUSER  UMX"
1.5.7.1.2,56937,"6290.15.10  STEEL STRUCTURE EXHAUST GAS DIFFUSER  UMX",5121,"HK1003-Rev.0E-3",WBS,"56935",,,,,NotStart,,,,,,,,,,,,,,,,,,,"HK1003 -Blackpoint D2 - Rev.0E DD30092021;6000  BUILDING + STRUCTURES;6290  STRUCTURES FOR MAIN MACHINE SETS  UM-;6290.15  STRUCTURE FOR EXHAUST GAS DIFFUSER  UMX"
1.5.7.1.3,56936,"6290.15.05  FOUNDATION EXHAUST GAS DIFFUSER  UMX",5121,"HK1003-Rev.0E-3",WBS,"56935",,,,,NotStart,,,,,,,,,,,,,,,,,,,"HK1003 -Blackpoint D2 - Rev.0E DD30092021;6000  BUILDING + STRUCTURES;6290  STRUCTURES FOR MAIN MACHINE SETS  UM-;6290.15  STRUCTURE FOR EXHAUST GAS DIFFUSER  UMX"
1.5.7.2,56924,"6290.10  GAS + STEAM TURBINE BUILDING  UMC",5121,"HK1003-Rev.0E-3",WBS,"56922",,,,100,Complete,,,,,,,,,0,,0,,0,,0,,,,"HK1003 -Blackpoint D2 - Rev.0E DD30092021;6000  BUILDING + STRUCTURES;6290  STRUCTURES FOR MAIN MACHINE SETS  UM-"
1.5.7.2.1,56934,"6290.10.40  FINISHING WORKS  UMC",5121,"HK1003-Rev.0E-3",WBS,"56924",,,,,NotStart,,,,,,,,,,,,,,,,,,,"HK1003 -Blackpoint D2 - Rev.0E DD30092021;6000  BUILDING + STRUCTURES;6290  STRUCTURES FOR MAIN MACHINE SETS  UM-;6290.10  GAS + STEAM TURBINE BUILDING  UMC"
1.5.7.2.2,56933,"6290.10.35  CLADDING  UMC",5121,"HK1003-Rev.0E-3",WBS,"56924",,,,,NotStart,,,,,,,,,,,,,,,,,,,"HK1003 -Blackpoint D2 - Rev.0E DD30092021;6000  BUILDING + STRUCTURES;6290  STRUCTURES FOR MAIN MACHINE SETS  UM-;6290.10  GAS + STEAM TURBINE BUILDING  UMC"
1.5.7.2.3,56932,"6290.10.33  STEEL PLATFORMS LOT3  UMC",5121,"HK1003-Rev.0E-3",WBS,"56924",,,,,NotStart,,,,,,,,,,,,,,,,,,,"HK1003 -Blackpoint D2 - Rev.0E DD30092021;6000  BUILDING + STRUCTURES;6290  STRUCTURES FOR MAIN MACHINE SETS  UM-;6290.10  GAS + STEAM TURBINE BUILDING  UMC"
1.5.7.2.4,56931,"6290.10.32  STEEL PLATFORMS LOT2  UMC",5121,"HK1003-Rev.0E-3",WBS,"56924",,,,,NotStart,,,,,,,,,,,,,,,,,,,"HK1003 -Blackpoint D2 - Rev.0E DD30092021;6000  BUILDING + STRUCTURES;6290  STRUCTURES FOR MAIN MACHINE SETS  UM-;6290.10  GAS + STEAM TURBINE BUILDING  UMC"
1.5.7.2.5,56930,"6290.10.31  STEEL PLATFORMS UMC",5121,"HK1003-Rev.0E-3",WBS,"56924",,,,,NotStart,,,,,,,,,,,,,,,,,,,"HK1003 -Blackpoint D2 - Rev.0E DD30092021;6000  BUILDING + STRUCTURES;6290  STRUCTURES FOR MAIN MACHINE SETS  UM-;6290.10  GAS + STEAM TURBINE BUILDING  UMC"
1.5.7.2.6,56929,"6290.10.25  STEEL STRUCTURE  UMC",5121,"HK1003-Rev.0E-3",WBS,"56924",,,,,NotStart,,,,,,,,,,,,,,,,,,,"HK1003 -Blackpoint D2 - Rev.0E DD30092021;6000  BUILDING + STRUCTURES;6290  STRUCTURES FOR MAIN MACHINE SETS  UM-;6290.10  GAS + STEAM TURBINE BUILDING  UMC"
1.5.7.2.7,56928,"6290.10.20  BUILDING FOUNDATION  UMC",5121,"HK1003-Rev.0E-3",WBS,"56924",,,,,NotStart,,,,,,,,,,,,,,,,,,,"HK1003 -Blackpoint D2 - Rev.0E DD30092021;6000  BUILDING + STRUCTURES;6290  STRUCTURES FOR MAIN MACHINE SETS  UM-;6290.10  GAS + STEAM TURBINE BUILDING  UMC"
1.5.7.2.8,56927,"6290.10.10  TURBOSET FOUNDATION  UMC",5121,"HK1003-Rev.0E-3",WBS,"56924",,,,,NotStart,,,,,,,,,,,,,,,,,,,"HK1003 -Blackpoint D2 - Rev.0E DD30092021;6000  BUILDING + STRUCTURES;6290  STRUCTURES FOR MAIN MACHINE SETS  UM-;6290.10  GAS + STEAM TURBINE BUILDING  UMC"
1.5.7.2.9,56926,"6290.10.07  CONCRETE STRUCTURE CONDENSATE PIT  UMC",5121,"HK1003-Rev.0E-3",WBS,"56924",,,,,NotStart,,,,,,,,,,,,,,,,,,,"HK1003 -Blackpoint D2 - Rev.0E DD30092021;6000  BUILDING + STRUCTURES;6290  STRUCTURES FOR MAIN MACHINE SETS  UM-;6290.10  GAS + STEAM TURBINE BUILDING  UMC"
1.5.7.2.10,56925,"6290.10.05  TEMPORARY WORKS CONDENSATE PIT  UMC",5121,"HK1003-Rev.0E-3",WBS,"56924",,,,,NotStart,,,,,,,,,,,,,,,,,,,"HK1003 -Blackpoint D2 - Rev.0E DD30092021;6000  BUILDING + STRUCTURES;6290  STRUCTURES FOR MAIN MACHINE SETS  UM-;6290.10  GAS + STEAM TURBINE BUILDING  UMC"
1.5.7.3,56923,"6290.05  PILING DESIGN  GAS + STEAM TURBINE AREA",5121,"HK1003-Rev.0E-3",WBS,"56922",,,,,NotStart,,,,,,,,,,,,,,,,,,,"HK1003 -Blackpoint D2 - Rev.0E DD30092021;6000  BUILDING + STRUCTURES;6290  STRUCTURES FOR MAIN MACHINE SETS  UM-"
1.5.8,56915,"6270  STRUCTURES FOR STEAM, WATER + GAS SYSTEMS  UL-",5121,"HK1003-Rev.0E-3",WBS,"56819",,,,100,Complete,,,,,,,,,0,,0,,0,,0,,,,"HK1003 -Blackpoint D2 - Rev.0E DD30092021;6000  BUILDING + STRUCTURES"
1.5.8.1,56920,"6270.10  STRUCTURE FOR CONDENSATE POLISHING PLANT  ULD",5121,"HK1003-Rev.0E-3",WBS,"56915",,,,100,Complete,,,,,,,,,0,,0,,0,,0,,,,"HK1003 -Blackpoint D2 - Rev.0E DD30092021;6000  BUILDING + STRUCTURES;6270  STRUCTURES FOR STEAM, WATER + GAS SYSTEMS  UL-"
1.5.8.1.1,56921,"6270.10.05  CONCRETE STRUCTURE CONDENSATE POLISHING PLANT  ULD",5121,"HK1003-Rev.0E-3",WBS,"56920",,,,,NotStart,,,,,,,,,,,,,,,,,,,"HK1003 -Blackpoint D2 - Rev.0E DD30092021;6000  BUILDING + STRUCTURES;6270  STRUCTURES FOR STEAM, WATER + GAS SYSTEMS  UL-;6270.10  STRUCTURE FOR CONDENSATE POLISHING PLANT  ULD"
1.5.8.2,56916,"6270.05  FEEDWATER PUMP STRUCTURE  ULA",5121,"HK1003-Rev.0E-3",WBS,"56915",,,,100,Complete,,,,,,,,,0,,0,,0,,0,,,,"HK1003 -Blackpoint D2 - Rev.0E DD30092021;6000  BUILDING + STRUCTURES;6270  STRUCTURES FOR STEAM, WATER + GAS SYSTEMS  UL-"
1.5.8.2.1,56919,"6270.05.15  CLADDING FEEDWATER PUMP BUILDING  ULA",5121,"HK1003-Rev.0E-3",WBS,"56916",,,,,NotStart,,,,,,,,,,,,,,,,,,,"HK1003 -Blackpoint D2 - Rev.0E DD30092021;6000  BUILDING + STRUCTURES;6270  STRUCTURES FOR STEAM, WATER + GAS SYSTEMS  UL-;6270.05  FEEDWATER PUMP STRUCTURE  ULA"
1.5.8.2.2,56918,"6270.05.10  STEEL STRUCTURE FEEDWATER PUMP STRUCTURE  ULA",5121,"HK1003-Rev.0E-3",WBS,"56916",,,,,NotStart,,,,,,,,,,,,,,,,,,,"HK1003 -Blackpoint D2 - Rev.0E DD30092021;6000  BUILDING + STRUCTURES;6270  STRUCTURES FOR STEAM, WATER + GAS SYSTEMS  UL-;6270.05  FEEDWATER PUMP STRUCTURE  ULA"
1.5.8.2.3,56917,"6270.05.05  FOUNDATION FEEDWATER PUMP STRUCTURE  ULA",5121,"HK1003-Rev.0E-3",WBS,"56916",,,,,NotStart,,,,,,,,,,,,,,,,,,,"HK1003 -Blackpoint D2 - Rev.0E DD30092021;6000  BUILDING + STRUCTURES;6270  STRUCTURES FOR STEAM, WATER + GAS SYSTEMS  UL-;6270.05  FEEDWATER PUMP STRUCTURE  ULA"
1.5.9,56903,"6220  STRUCTURES FOR FOSSIL-FIRED HEAT GENERATION  UHA/UHB/UHW/UHX/UHY",5121,"HK1003-Rev.0E-3",WBS,"56819",,,,100,Complete,,,,,,,,,0,,0,,0,,0,,,,"HK1003 -Blackpoint D2 - Rev.0E DD30092021;6000  BUILDING + STRUCTURES"
1.5.9.1,56912,"6220.30  PIPE BRIDGE + SLEEPER WAYS STRUCTURE  UHY",5121,"HK1003-Rev.0E-3",WBS,"56903",,,,100,Complete,,,,,,,,,0,,0,,0,,0,,,,"HK1003 -Blackpoint D2 - Rev.0E DD30092021;6000  BUILDING + STRUCTURES;6220  STRUCTURES FOR FOSSIL-FIRED HEAT GENERATION  UHA/UHB/UHW/UHX/UHY"
1.5.9.1.1,56914,"6220.20.15  STEEL STRUCTURE PIPE BRIDGE + SLEEPER WAYS  UHY",5121,"HK1003-Rev.0E-3",WBS,"56912",,,,,NotStart,,,,,,,,,,,,,,,,,,,"HK1003 -Blackpoint D2 - Rev.0E DD30092021;6000  BUILDING + STRUCTURES;6220  STRUCTURES FOR FOSSIL-FIRED HEAT GENERATION  UHA/UHB/UHW/UHX/UHY;6220.30  PIPE BRIDGE + SLEEPER WAYS STRUCTURE  UHY"
1.5.9.1.2,56913,"6220.20.10  CONCRETE STRUCTURE PIPE BRIDGE + SLEEPER WAYS  UHY",5121,"HK1003-Rev.0E-3",WBS,"56912",,,,,NotStart,,,,,,,,,,,,,,,,,,,"HK1003 -Blackpoint D2 - Rev.0E DD30092021;6000  BUILDING + STRUCTURES;6220  STRUCTURES FOR FOSSIL-FIRED HEAT GENERATION  UHA/UHB/UHW/UHX/UHY;6220.30  PIPE BRIDGE + SLEEPER WAYS STRUCTURE  UHY"
1.5.9.2,56911,"6220.25  FOUNDATION SAMPLING CONTAINER STRUCTURE  UHX",5121,"HK1003-Rev.0E-3",WBS,"56903",,,,,NotStart,,,,,,,,,,,,,,,,,,,"HK1003 -Blackpoint D2 - Rev.0E DD30092021;6000  BUILDING + STRUCTURES;6220  STRUCTURES FOR FOSSIL-FIRED HEAT GENERATION  UHA/UHB/UHW/UHX/UHY"
1.5.9.3,56907,"6220.20  BOILER BLOWDOWN STRUCTURE  UHW",5121,"HK1003-Rev.0E-3",WBS,"56903",,,,100,Complete,,,,,,,,,0,,0,,0,,0,,,,"HK1003 -Blackpoint D2 - Rev.0E DD30092021;6000  BUILDING + STRUCTURES;6220  STRUCTURES FOR FOSSIL-FIRED HEAT GENERATION  UHA/UHB/UHW/UHX/UHY"
1.5.9.3.1,56910,"6220.20.15  STEEL STRUCTURE BOILER BLOWDOWN STRUCTURE  UHW",5121,"HK1003-Rev.0E-3",WBS,"56907",,,,,NotStart,,,,,,,,,,,,,,,,,,,"HK1003 -Blackpoint D2 - Rev.0E DD30092021;6000  BUILDING + STRUCTURES;6220  STRUCTURES FOR FOSSIL-FIRED HEAT GENERATION  UHA/UHB/UHW/UHX/UHY;6220.20  BOILER BLOWDOWN STRUCTURE  UHW"
1.5.9.3.2,56909,"6220.20.10  CONCRETE STRUCTURE BOILER BLOWDOWN STRUCT. UHW",5121,"HK1003-Rev.0E-3",WBS,"56907",,,,,NotStart,,,,,,,,,,,,,,,,,,,"HK1003 -Blackpoint D2 - Rev.0E DD30092021;6000  BUILDING + STRUCTURES;6220  STRUCTURES FOR FOSSIL-FIRED HEAT GENERATION  UHA/UHB/UHW/UHX/UHY;6220.20  BOILER BLOWDOWN STRUCTURE  UHW"
1.5.9.3.3,56908,"6220.20.05  TEMPORARY WORKS BOILER BLOWDOWN STRUCTURE  UHW",5121,"HK1003-Rev.0E-3",WBS,"56907",,,,,NotStart,,,,,,,,,,,,,,,,,,,"HK1003 -Blackpoint D2 - Rev.0E DD30092021;6000  BUILDING + STRUCTURES;6220  STRUCTURES FOR FOSSIL-FIRED HEAT GENERATION  UHA/UHB/UHW/UHX/UHY;6220.20  BOILER BLOWDOWN STRUCTURE  UHW"
1.5.9.4,56906,"6220.15  FOUNDATION  AUXILIARY BOILER  UHB",5121,"HK1003-Rev.0E-3",WBS,"56903",,,,,NotStart,,,,,,,,,,,,,,,,,,,"HK1003 -Blackpoint D2 - Rev.0E DD30092021;6000  BUILDING + STRUCTURES;6220  STRUCTURES FOR FOSSIL-FIRED HEAT GENERATION  UHA/UHB/UHW/UHX/UHY"
1.5.9.5,56905,"6220.10  BUILDING FOUNDATION  HRSG  UHA",5121,"HK1003-Rev.0E-3",WBS,"56903",,,,,NotStart,,,,,,,,,,,,,,,,,,,"HK1003 -Blackpoint D2 - Rev.0E DD30092021;6000  BUILDING + STRUCTURES;6220  STRUCTURES FOR FOSSIL-FIRED HEAT GENERATION  UHA/UHB/UHW/UHX/UHY"
1.5.9.6,56904,"6220.05  PILING DESIGN  BOILER AREA",5121,"HK1003-Rev.0E-3",WBS,"56903",,,,,NotStart,,,,,,,,,,,,,,,,,,,"HK1003 -Blackpoint D2 - Rev.0E DD30092021;6000  BUILDING + STRUCTURES;6220  STRUCTURES FOR FOSSIL-FIRED HEAT GENERATION  UHA/UHB/UHW/UHX/UHY"
1.5.10,56881,"6190  STRUCTURES FOR WATER SUPPLY + DISPOSAL",5121,"HK1003-Rev.0E-3",WBS,"56819",,,,100,Complete,,,,,,,,,0,,0,,0,,0,,,,"HK1003 -Blackpoint D2 - Rev.0E DD30092021;6000  BUILDING + STRUCTURES"
1.5.10.1,56900,"6140.30  STRUCTURE FOR WATER TRANSFER + CABLES  UGY",5121,"HK1003-Rev.0E-3",WBS,"56881",,,,100,Complete,,,,,,,,,0,,0,,0,,0,,,,"HK1003 -Blackpoint D2 - Rev.0E DD30092021;6000  BUILDING + STRUCTURES;6190  STRUCTURES FOR WATER SUPPLY + DISPOSAL"
1.5.10.1.1,56902,"6140.30.10  STEEL STRUCTURE SLEEPER WAYS (PIPES+CABLES)  UGY",5121,"HK1003-Rev.0E-3",WBS,"56900",,,,,NotStart,,,,,,,,,,,,,,,,,,,"HK1003 -Blackpoint D2 - Rev.0E DD30092021;6000  BUILDING + STRUCTURES;6190  STRUCTURES FOR WATER SUPPLY + DISPOSAL;6140.30  STRUCTURE FOR WATER TRANSFER + CABLES  UGY"
1.5.10.1.2,56901,"6140.30.05  FOUNDATION SLEEPER WAYS (PIPES+CABLES)  UGY",5121,"HK1003-Rev.0E-3",WBS,"56900",,,,,NotStart,,,,,,,,,,,,,,,,,,,"HK1003 -Blackpoint D2 - Rev.0E DD30092021;6000  BUILDING + STRUCTURES;6190  STRUCTURES FOR WATER SUPPLY + DISPOSAL;6140.30  STRUCTURE FOR WATER TRANSFER + CABLES  UGY"
1.5.10.2,56899,"6190.35  RETENTION POND STRUCTURE FOR ACID CLEANING  UGX",5121,"HK1003-Rev.0E-3",WBS,"56881",,,,,NotStart,,,,,,,,,,,,,,,,,,,"HK1003 -Blackpoint D2 - Rev.0E DD30092021;6000  BUILDING + STRUCTURES;6190  STRUCTURES FOR WATER SUPPLY + DISPOSAL"
1.5.10.3,56895,"6190.30  STRUCTURE FOR EFFLUENT DISPOSAL/TREATMENT  UGU/UGV",5121,"HK1003-Rev.0E-3",WBS,"56881",,,,100,Complete,,,,,,,,,0,,0,,0,,0,,,,"HK1003 -Blackpoint D2 - Rev.0E DD30092021;6000  BUILDING + STRUCTURES;6190  STRUCTURES FOR WATER SUPPLY + DISPOSAL"
1.5.10.3.1,56898,"6190.30.15  SEWAGE WATER TREATMENT PLANT  UGV",5121,"HK1003-Rev.0E-3",WBS,"56895",,,,,NotStart,,,,,,,,,,,,,,,,,,,"HK1003 -Blackpoint D2 - Rev.0E DD30092021;6000  BUILDING + STRUCTURES;6190  STRUCTURES FOR WATER SUPPLY + DISPOSAL;6190.30  STRUCTURE FOR EFFLUENT DISPOSAL/TREATMENT  UGU/UGV"
1.5.10.3.2,56897,"6190.30.10  CONCRETE STRUCTURE SEWAGE WATER PIT UGV",5121,"HK1003-Rev.0E-3",WBS,"56895",,,,,NotStart,,,,,,,,,,,,,,,,,,,"HK1003 -Blackpoint D2 - Rev.0E DD30092021;6000  BUILDING + STRUCTURES;6190  STRUCTURES FOR WATER SUPPLY + DISPOSAL;6190.30  STRUCTURE FOR EFFLUENT DISPOSAL/TREATMENT  UGU/UGV"
1.5.10.3.3,56896,"6190.30.05  CONCRETE STRUCTURE SEWAGE WATER PUMP  UGU",5121,"HK1003-Rev.0E-3",WBS,"56895",,,,,NotStart,,,,,,,,,,,,,,,,,,,"HK1003 -Blackpoint D2 - Rev.0E DD30092021;6000  BUILDING + STRUCTURES;6190  STRUCTURES FOR WATER SUPPLY + DISPOSAL;6190.30  STRUCTURE FOR EFFLUENT DISPOSAL/TREATMENT  UGU/UGV"
1.5.10.4,56890,"6190.25  STRUCTURE FOR COOLING TOWER MAKEUP WATER  UGJ",5121,"HK1003-Rev.0E-3",WBS,"56881",,,,100,Complete,,,,,,,,,0,,0,,0,,0,,,,"HK1003 -Blackpoint D2 - Rev.0E DD30092021;6000  BUILDING + STRUCTURES;6190  STRUCTURES FOR WATER SUPPLY + DISPOSAL"
1.5.10.4.1,56894,"6190.25.20  FINISHING WORKS COOLING TOWER MAKEUP WATER  UGJ",5121,"HK1003-Rev.0E-3",WBS,"56890",,,,,NotStart,,,,,,,,,,,,,,,,,,,"HK1003 -Blackpoint D2 - Rev.0E DD30092021;6000  BUILDING + STRUCTURES;6190  STRUCTURES FOR WATER SUPPLY + DISPOSAL;6190.25  STRUCTURE FOR COOLING TOWER MAKEUP WATER  UGJ"
1.5.10.4.2,56893,"6190.25.15  CLADDING  COOLING TOWER MAKEUP WATER  UGJ",5121,"HK1003-Rev.0E-3",WBS,"56890",,,,,NotStart,,,,,,,,,,,,,,,,,,,"HK1003 -Blackpoint D2 - Rev.0E DD30092021;6000  BUILDING + STRUCTURES;6190  STRUCTURES FOR WATER SUPPLY + DISPOSAL;6190.25  STRUCTURE FOR COOLING TOWER MAKEUP WATER  UGJ"
1.5.10.4.3,56892,"6190.25.10  STEEL STRUCTURE  COOLING TOWER MAKEUP WATER  UGJ",5121,"HK1003-Rev.0E-3",WBS,"56890",,,,,NotStart,,,,,,,,,,,,,,,,,,,"HK1003 -Blackpoint D2 - Rev.0E DD30092021;6000  BUILDING + STRUCTURES;6190  STRUCTURES FOR WATER SUPPLY + DISPOSAL;6190.25  STRUCTURE FOR COOLING TOWER MAKEUP WATER  UGJ"
1.5.10.4.4,56891,"6190.25.05  FOUNDATION  COOLING TOWER MAKEUP WATER  UGJ",5121,"HK1003-Rev.0E-3",WBS,"56890",,,,,NotStart,,,,,,,,,,,,,,,,,,,"HK1003 -Blackpoint D2 - Rev.0E DD30092021;6000  BUILDING + STRUCTURES;6190  STRUCTURES FOR WATER SUPPLY + DISPOSAL;6190.25  STRUCTURE FOR COOLING TOWER MAKEUP WATER  UGJ"
1.5.10.5,56885,"6190.20  STRUCTURE FOR DEMINERALIZATION SYSTEM  UGD",5121,"HK1003-Rev.0E-3",WBS,"56881",,,,100,Complete,,,,,,,,,0,,0,,0,,0,,,,"HK1003 -Blackpoint D2 - Rev.0E DD30092021;6000  BUILDING + STRUCTURES;6190  STRUCTURES FOR WATER SUPPLY + DISPOSAL"
1.5.10.5.1,56889,"6190.20.20  FINISHING WORKS WATER TREATMENT BUILDING  UGD",5121,"HK1003-Rev.0E-3",WBS,"56885",,,,,NotStart,,,,,,,,,,,,,,,,,,,"HK1003 -Blackpoint D2 - Rev.0E DD30092021;6000  BUILDING + STRUCTURES;6190  STRUCTURES FOR WATER SUPPLY + DISPOSAL;6190.20  STRUCTURE FOR DEMINERALIZATION SYSTEM  UGD"
1.5.10.5.2,56888,"6190.20.15  CLADDING WATER TREATMENT BUILDING  UGD",5121,"HK1003-Rev.0E-3",WBS,"56885",,,,,NotStart,,,,,,,,,,,,,,,,,,,"HK1003 -Blackpoint D2 - Rev.0E DD30092021;6000  BUILDING + STRUCTURES;6190  STRUCTURES FOR WATER SUPPLY + DISPOSAL;6190.20  STRUCTURE FOR DEMINERALIZATION SYSTEM  UGD"
1.5.10.5.3,56887,"6190.20.10  STEEL STRUCTURE WATER TREATMENT BUILDING  UGD",5121,"HK1003-Rev.0E-3",WBS,"56885",,,,,NotStart,,,,,,,,,,,,,,,,,,,"HK1003 -Blackpoint D2 - Rev.0E DD30092021;6000  BUILDING + STRUCTURES;6190  STRUCTURES FOR WATER SUPPLY + DISPOSAL;6190.20  STRUCTURE FOR DEMINERALIZATION SYSTEM  UGD"
1.5.10.5.4,56886,"6190.20.05  FOUNDATION WATER TREATMENT BUILDING  UGD",5121,"HK1003-Rev.0E-3",WBS,"56885",,,,,NotStart,,,,,,,,,,,,,,,,,,,"HK1003 -Blackpoint D2 - Rev.0E DD30092021;6000  BUILDING + STRUCTURES;6190  STRUCTURES FOR WATER SUPPLY + DISPOSAL;6190.20  STRUCTURE FOR DEMINERALIZATION SYSTEM  UGD"
1.5.10.6,56884,"6190.15  FOUNDATION DEMINERALIZED WATER TANK  UGC",5121,"HK1003-Rev.0E-3",WBS,"56881",,,,,NotStart,,,,,,,,,,,,,,,,,,,"HK1003 -Blackpoint D2 - Rev.0E DD30092021;6000  BUILDING + STRUCTURES;6190  STRUCTURES FOR WATER SUPPLY + DISPOSAL"
1.5.10.7,56883,"6190.10  FOUNDATION RAW WATER TANK  UGA",5121,"HK1003-Rev.0E-3",WBS,"56881",,,,,NotStart,,,,,,,,,,,,,,,,,,,"HK1003 -Blackpoint D2 - Rev.0E DD30092021;6000  BUILDING + STRUCTURES;6190  STRUCTURES FOR WATER SUPPLY + DISPOSAL"
1.5.10.8,56882,"6190.05  PILING DESIGN WATER TREATMENT AREA",5121,"HK1003-Rev.0E-3",WBS,"56881",,,,,NotStart,,,,,,,,,,,,,,,,,,,"HK1003 -Blackpoint D2 - Rev.0E DD30092021;6000  BUILDING + STRUCTURES;6190  STRUCTURES FOR WATER SUPPLY + DISPOSAL"
1.5.11,56862,"6140  STRUCTURES FOR FUEL SUPPLY, TREATMENT + DISPOSAL  UE-",5121,"HK1003-Rev.0E-3",WBS,"56819",,,,100,Complete,,,,,,,,,0,,0,,0,,0,,,,"HK1003 -Blackpoint D2 - Rev.0E DD30092021;6000  BUILDING + STRUCTURES"
1.5.11.1,56878,"6140.25  STRUCTURE FOR FUEL TRANSFER  UEY",5121,"HK1003-Rev.0E-3",WBS,"56862",,,,100,Complete,,,,,,,,,0,,0,,0,,0,,,,"HK1003 -Blackpoint D2 - Rev.0E DD30092021;6000  BUILDING + STRUCTURES;6140  STRUCTURES FOR FUEL SUPPLY, TREATMENT + DISPOSAL  UE-"
1.5.11.1.1,56880,"6140.25.10  STEEL STRUCTURE PIPE BRIDGE  UEY",5121,"HK1003-Rev.0E-3",WBS,"56878",,,,,NotStart,,,,,,,,,,,,,,,,,,,"HK1003 -Blackpoint D2 - Rev.0E DD30092021;6000  BUILDING + STRUCTURES;6140  STRUCTURES FOR FUEL SUPPLY, TREATMENT + DISPOSAL  UE-;6140.25  STRUCTURE FOR FUEL TRANSFER  UEY"
1.5.11.1.2,56879,"6140.25.05  FOUNDATION PIPE BRIDGE  UEY",5121,"HK1003-Rev.0E-3",WBS,"56878",,,,,NotStart,,,,,,,,,,,,,,,,,,,"HK1003 -Blackpoint D2 - Rev.0E DD30092021;6000  BUILDING + STRUCTURES;6140  STRUCTURES FOR FUEL SUPPLY, TREATMENT + DISPOSAL  UE-;6140.25  STRUCTURE FOR FUEL TRANSFER  UEY"
1.5.11.2,56870,"6140.20  STRUCTURES FOR FUEL OIL SUPPLY  UEJ/UEL/UEH",5121,"HK1003-Rev.0E-3",WBS,"56862",,,,100,Complete,,,,,,,,,0,,0,,0,,0,,,,"HK1003 -Blackpoint D2 - Rev.0E DD30092021;6000  BUILDING + STRUCTURES;6140  STRUCTURES FOR FUEL SUPPLY, TREATMENT + DISPOSAL  UE-"
1.5.11.2.1,56877,"6140.20.35  CLADDING FUEL OIL UNLOADING STRUCTURE  UEH",5121,"HK1003-Rev.0E-3",WBS,"56870",,,,,NotStart,,,,,,,,,,,,,,,,,,,"HK1003 -Blackpoint D2 - Rev.0E DD30092021;6000  BUILDING + STRUCTURES;6140  STRUCTURES FOR FUEL SUPPLY, TREATMENT + DISPOSAL  UE-;6140.20  STRUCTURES FOR FUEL OIL SUPPLY  UEJ/UEL/UEH"
1.5.11.2.2,56876,"6140.20.30  STEEL STRUCTURE FUEL OIL UNLOADING STRUCTURE  UEH",5121,"HK1003-Rev.0E-3",WBS,"56870",,,,,NotStart,,,,,,,,,,,,,,,,,,,"HK1003 -Blackpoint D2 - Rev.0E DD30092021;6000  BUILDING + STRUCTURES;6140  STRUCTURES FOR FUEL SUPPLY, TREATMENT + DISPOSAL  UE-;6140.20  STRUCTURES FOR FUEL OIL SUPPLY  UEJ/UEL/UEH"
1.5.11.2.3,56875,"6140.20.25  FOUNDATION FUEL OIL UNLOADING STRUCTURE  UEH",5121,"HK1003-Rev.0E-3",WBS,"56870",,,,,NotStart,,,,,,,,,,,,,,,,,,,"HK1003 -Blackpoint D2 - Rev.0E DD30092021;6000  BUILDING + STRUCTURES;6140  STRUCTURES FOR FUEL SUPPLY, TREATMENT + DISPOSAL  UE-;6140.20  STRUCTURES FOR FUEL OIL SUPPLY  UEJ/UEL/UEH"
1.5.11.2.4,56874,"6140.20.20  CLADDING FUEL OIL FORWARDING SYSTEM  UEL",5121,"HK1003-Rev.0E-3",WBS,"56870",,,,,NotStart,,,,,,,,,,,,,,,,,,,"HK1003 -Blackpoint D2 - Rev.0E DD30092021;6000  BUILDING + STRUCTURES;6140  STRUCTURES FOR FUEL SUPPLY, TREATMENT + DISPOSAL  UE-;6140.20  STRUCTURES FOR FUEL OIL SUPPLY  UEJ/UEL/UEH"
1.5.11.2.5,56873,"6140.20.15  STEEL STRUCTURE FUEL OIL FORWARDING SYSTEM  UEL",5121,"HK1003-Rev.0E-3",WBS,"56870",,,,,NotStart,,,,,,,,,,,,,,,,,,,"HK1003 -Blackpoint D2 - Rev.0E DD30092021;6000  BUILDING + STRUCTURES;6140  STRUCTURES FOR FUEL SUPPLY, TREATMENT + DISPOSAL  UE-;6140.20  STRUCTURES FOR FUEL OIL SUPPLY  UEJ/UEL/UEH"
1.5.11.2.6,56872,"6140.20.10  FOUNDATION FUEL OIL FORWARDING SYSTEM  UEL",5121,"HK1003-Rev.0E-3",WBS,"56870",,,,,NotStart,,,,,,,,,,,,,,,,,,,"HK1003 -Blackpoint D2 - Rev.0E DD30092021;6000  BUILDING + STRUCTURES;6140  STRUCTURES FOR FUEL SUPPLY, TREATMENT + DISPOSAL  UE-;6140.20  STRUCTURES FOR FUEL OIL SUPPLY  UEJ/UEL/UEH"
1.5.11.2.7,56871,"6140.20.05  FOUNDATION  FUEL OIL STORAGE TANK  UEJ/UEK",5121,"HK1003-Rev.0E-3",WBS,"56870",,,,,NotStart,,,,,,,,,,,,,,,,,,,"HK1003 -Blackpoint D2 - Rev.0E DD30092021;6000  BUILDING + STRUCTURES;6140  STRUCTURES FOR FUEL SUPPLY, TREATMENT + DISPOSAL  UE-;6140.20  STRUCTURES FOR FUEL OIL SUPPLY  UEJ/UEL/UEH"
1.5.11.3,56869,"6140.15  PILING DESIGN  FUEL OIL AREA",5121,"HK1003-Rev.0E-3",WBS,"56862",,,,,NotStart,,,,,,,,,,,,,,,,,,,"HK1003 -Blackpoint D2 - Rev.0E DD30092021;6000  BUILDING + STRUCTURES;6140  STRUCTURES FOR FUEL SUPPLY, TREATMENT + DISPOSAL  UE-"
1.5.11.4,56864,"6140.10  STRUCTURES FOR FUEL GAS SUPPLY  UEN",5121,"HK1003-Rev.0E-3",WBS,"56862",,,,100,Complete,,,,,,,,,0,,0,,0,,0,,,,"HK1003 -Blackpoint D2 - Rev.0E DD30092021;6000  BUILDING + STRUCTURES;6140  STRUCTURES FOR FUEL SUPPLY, TREATMENT + DISPOSAL  UE-"
1.5.11.4.1,56868,"6140.10.20  FENCING/FINISHING WORKS  FUEL GAS FINAL FILTER/METERING  10UEN",5121,"HK1003-Rev.0E-3",WBS,"56864",,,,,NotStart,,,,,,,,,,,,,,,,,,,"HK1003 -Blackpoint D2 - Rev.0E DD30092021;6000  BUILDING + STRUCTURES;6140  STRUCTURES FOR FUEL SUPPLY, TREATMENT + DISPOSAL  UE-;6140.10  STRUCTURES FOR FUEL GAS SUPPLY  UEN"
1.5.11.4.2,56867,"6140.10.15  FOUNDATION FUEL GAS FINAL FILTER/METERING  10UEN",5121,"HK1003-Rev.0E-3",WBS,"56864",,,,,NotStart,,,,,,,,,,,,,,,,,,,"HK1003 -Blackpoint D2 - Rev.0E DD30092021;6000  BUILDING + STRUCTURES;6140  STRUCTURES FOR FUEL SUPPLY, TREATMENT + DISPOSAL  UE-;6140.10  STRUCTURES FOR FUEL GAS SUPPLY  UEN"
1.5.11.4.3,56866,"6140.10.10  FENCING/FINISHING WORKS  FUEL GAS REDUCING STATION  00UEN",5121,"HK1003-Rev.0E-3",WBS,"56864",,,,,NotStart,,,,,,,,,,,,,,,,,,,"HK1003 -Blackpoint D2 - Rev.0E DD30092021;6000  BUILDING + STRUCTURES;6140  STRUCTURES FOR FUEL SUPPLY, TREATMENT + DISPOSAL  UE-;6140.10  STRUCTURES FOR FUEL GAS SUPPLY  UEN"
1.5.11.4.4,56865,"6140.10.05  FOUNDATION FUEL GAS REDUCING STATION  00UEN",5121,"HK1003-Rev.0E-3",WBS,"56864",,,,,NotStart,,,,,,,,,,,,,,,,,,,"HK1003 -Blackpoint D2 - Rev.0E DD30092021;6000  BUILDING + STRUCTURES;6140  STRUCTURES FOR FUEL SUPPLY, TREATMENT + DISPOSAL  UE-;6140.10  STRUCTURES FOR FUEL GAS SUPPLY  UEN"
1.5.11.5,56863,"6140.05  PILING DESIGN  FUEL GAS AREA",5121,"HK1003-Rev.0E-3",WBS,"56862",,,,,NotStart,,,,,,,,,,,,,,,,,,,"HK1003 -Blackpoint D2 - Rev.0E DD30092021;6000  BUILDING + STRUCTURES;6140  STRUCTURES FOR FUEL SUPPLY, TREATMENT + DISPOSAL  UE-"
1.5.12,56852,"6130  STRUCTURES FOR INSTRUMENTATION + CONTROL  UCA (UYC/UST)",5121,"HK1003-Rev.0E-3",WBS,"56819",,,,100,Complete,,,,,,,,,0,,0,,0,,0,,,,"HK1003 -Blackpoint D2 - Rev.0E DD30092021;6000  BUILDING + STRUCTURES"
1.5.12.1,56861,"6130.40  MASONRY/FINISHING WORKS  UST",5121,"HK1003-Rev.0E-3",WBS,"56852",,,,,NotStart,,,,,,,,,,,,,,,,,,,"HK1003 -Blackpoint D2 - Rev.0E DD30092021;6000  BUILDING + STRUCTURES;6130  STRUCTURES FOR INSTRUMENTATION + CONTROL  UCA (UYC/UST)"
1.5.12.2,56860,"6130.35  FINISHING WORKS  UST",5121,"HK1003-Rev.0E-3",WBS,"56852",,,,,NotStart,,,,,,,,,,,,,,,,,,,"HK1003 -Blackpoint D2 - Rev.0E DD30092021;6000  BUILDING + STRUCTURES;6130  STRUCTURES FOR INSTRUMENTATION + CONTROL  UCA (UYC/UST)"
1.5.12.3,56859,"6130.30  STEEL STRUCTURE UST",5121,"HK1003-Rev.0E-3",WBS,"56852",,,,,NotStart,,,,,,,,,,,,,,,,,,,"HK1003 -Blackpoint D2 - Rev.0E DD30092021;6000  BUILDING + STRUCTURES;6130  STRUCTURES FOR INSTRUMENTATION + CONTROL  UCA (UYC/UST)"
1.5.12.4,56858,"6130.25  CONCRETE STRUCTURE  UST",5121,"HK1003-Rev.0E-3",WBS,"56852",,,,,NotStart,,,,,,,,,,,,,,,,,,,"HK1003 -Blackpoint D2 - Rev.0E DD30092021;6000  BUILDING + STRUCTURES;6130  STRUCTURES FOR INSTRUMENTATION + CONTROL  UCA (UYC/UST)"
1.5.12.5,56857,"6130.20  MASONRY/FINISHING WORKS  UCA/UYC",5121,"HK1003-Rev.0E-3",WBS,"56852",,,,,NotStart,,,,,,,,,,,,,,,,,,,"HK1003 -Blackpoint D2 - Rev.0E DD30092021;6000  BUILDING + STRUCTURES;6130  STRUCTURES FOR INSTRUMENTATION + CONTROL  UCA (UYC/UST)"
1.5.12.6,56856,"6130.15  FINISHING WORKS  UCA/UYC",5121,"HK1003-Rev.0E-3",WBS,"56852",,,,,NotStart,,,,,,,,,,,,,,,,,,,"HK1003 -Blackpoint D2 - Rev.0E DD30092021;6000  BUILDING + STRUCTURES;6130  STRUCTURES FOR INSTRUMENTATION + CONTROL  UCA (UYC/UST)"
1.5.12.7,56855,"6130.12  STEELWORK UCA/UYC",5121,"HK1003-Rev.0E-3",WBS,"56852",,,,,NotStart,,,,,,,,,,,,,,,,,,,"HK1003 -Blackpoint D2 - Rev.0E DD30092021;6000  BUILDING + STRUCTURES;6130  STRUCTURES FOR INSTRUMENTATION + CONTROL  UCA (UYC/UST)"
1.5.12.8,56854,"6130.10  CONCRETE STRUCTURE  UCA/UYC",5121,"HK1003-Rev.0E-3",WBS,"56852",,,,,NotStart,,,,,,,,,,,,,,,,,,,"HK1003 -Blackpoint D2 - Rev.0E DD30092021;6000  BUILDING + STRUCTURES;6130  STRUCTURES FOR INSTRUMENTATION + CONTROL  UCA (UYC/UST)"
1.5.12.9,56853,"6130.05  PILING DESIGN  UCA/UYC/UST  AREA",5121,"HK1003-Rev.0E-3",WBS,"56852",,,,,NotStart,,,,,,,,,,,,,,,,,,,"HK1003 -Blackpoint D2 - Rev.0E DD30092021;6000  BUILDING + STRUCTURES;6130  STRUCTURES FOR INSTRUMENTATION + CONTROL  UCA (UYC/UST)"
1.5.13,56831,"6110  STRUCTURES FOR POWER SUBMISSION + AUX. POWER SUPPLY  UB-",5121,"HK1003-Rev.0E-3",WBS,"56819",,,,100,Complete,,,,,,,,,0,,0,,0,,0,,,,"HK1003 -Blackpoint D2 - Rev.0E DD30092021;6000  BUILDING + STRUCTURES"
1.5.13.1,56851,"6110.40  CONCRETE STRUCTURE CABLE PULLING PIT STRUCTURE  UBS",5121,"HK1003-Rev.0E-3",WBS,"56831",,,,,NotStart,,,,,,,,,,,,,,,,,,,"HK1003 -Blackpoint D2 - Rev.0E DD30092021;6000  BUILDING + STRUCTURES;6110  STRUCTURES FOR POWER SUBMISSION + AUX. POWER SUPPLY  UB-"
1.5.13.2,56850,"6110.35  CABLE DUCTS/PVC PIPE ROUTES  UBZ",5121,"HK1003-Rev.0E-3",WBS,"56831",,,,,NotStart,,,,,,,,,,,,,,,,,,,"HK1003 -Blackpoint D2 - Rev.0E DD30092021;6000  BUILDING + STRUCTURES;6110  STRUCTURES FOR POWER SUBMISSION + AUX. POWER SUPPLY  UB-"
1.5.13.3,56847,"6110.30  STRUCTURE FOR OIL COLLECTING PIT/SEPARATOR  UBH",5121,"HK1003-Rev.0E-3",WBS,"56831",,,,100,Complete,,,,,,,,,0,,0,,0,,0,,,,"HK1003 -Blackpoint D2 - Rev.0E DD30092021;6000  BUILDING + STRUCTURES;6110  STRUCTURES FOR POWER SUBMISSION + AUX. POWER SUPPLY  UB-"
1.5.13.3.1,56849,"6110.30.10  CONCRETE STRUCT. OIL COLLECTING PIT/SEPARATOR F. FUEL OIL AREA UBH02",5121,"HK1003-Rev.0E-3",WBS,"56847",,,,,NotStart,,,,,,,,,,,,,,,,,,,"HK1003 -Blackpoint D2 - Rev.0E DD30092021;6000  BUILDING + STRUCTURES;6110  STRUCTURES FOR POWER SUBMISSION + AUX. POWER SUPPLY  UB-;6110.30  STRUCTURE FOR OIL COLLECTING PIT/SEPARATOR  UBH"
1.5.13.3.2,56848,"6110.30.05  CONCRETE STRUCT. OIL COLLECTING PIT/SEPARATOR F. UMC/UBE/UBF  UBH01",5121,"HK1003-Rev.0E-3",WBS,"56847",,,,,NotStart,,,,,,,,,,,,,,,,,,,"HK1003 -Blackpoint D2 - Rev.0E DD30092021;6000  BUILDING + STRUCTURES;6110  STRUCTURES FOR POWER SUBMISSION + AUX. POWER SUPPLY  UB-;6110.30  STRUCTURE FOR OIL COLLECTING PIT/SEPARATOR  UBH"
1.5.13.4,56846,"6110.25  FOUNDATION FOR EMERGENCY DIESEL GENERATOR SET  UBN",5121,"HK1003-Rev.0E-3",WBS,"56831",,,,,NotStart,,,,,,,,,,,,,,,,,,,"HK1003 -Blackpoint D2 - Rev.0E DD30092021;6000  BUILDING + STRUCTURES;6110  STRUCTURES FOR POWER SUBMISSION + AUX. POWER SUPPLY  UB-"
1.5.13.5,56845,"6110.20  FOUNDATION HV-GANTRY  UBL",5121,"HK1003-Rev.0E-3",WBS,"56831",,,,,NotStart,,,,,,,,,,,,,,,,,,,"HK1003 -Blackpoint D2 - Rev.0E DD30092021;6000  BUILDING + STRUCTURES;6110  STRUCTURES FOR POWER SUBMISSION + AUX. POWER SUPPLY  UB-"
1.5.13.6,56841,"6110.15  STRUCTURE FOR GENERATOR CIRCUIT BREAKER  UBX",5121,"HK1003-Rev.0E-3",WBS,"56831",,,,100,Complete,,,,,,,,,0,,0,,0,,0,,,,"HK1003 -Blackpoint D2 - Rev.0E DD30092021;6000  BUILDING + STRUCTURES;6110  STRUCTURES FOR POWER SUBMISSION + AUX. POWER SUPPLY  UB-"
1.5.13.6.1,56844,"6110.15.15  CLADDING FOR GENERATOR CIRCUIT BREAKER  UBX",5121,"HK1003-Rev.0E-3",WBS,"56841",,,,,NotStart,,,,,,,,,,,,,,,,,,,"HK1003 -Blackpoint D2 - Rev.0E DD30092021;6000  BUILDING + STRUCTURES;6110  STRUCTURES FOR POWER SUBMISSION + AUX. POWER SUPPLY  UB-;6110.15  STRUCTURE FOR GENERATOR CIRCUIT BREAKER  UBX"
1.5.13.6.2,56843,"6110.15.10  STEEL STRUCTURE FOR GENERATOR CIRCUIT BREAKER  UBX",5121,"HK1003-Rev.0E-3",WBS,"56841",,,,,NotStart,,,,,,,,,,,,,,,,,,,"HK1003 -Blackpoint D2 - Rev.0E DD30092021;6000  BUILDING + STRUCTURES;6110  STRUCTURES FOR POWER SUBMISSION + AUX. POWER SUPPLY  UB-;6110.15  STRUCTURE FOR GENERATOR CIRCUIT BREAKER  UBX"
1.5.13.6.3,56842,"6110.15.05  FOUNDATION FOR GENERATOR CIRCUIT BREAKER  UBX",5121,"HK1003-Rev.0E-3",WBS,"56841",,,,,NotStart,,,,,,,,,,,,,,,,,,,"HK1003 -Blackpoint D2 - Rev.0E DD30092021;6000  BUILDING + STRUCTURES;6110  STRUCTURES FOR POWER SUBMISSION + AUX. POWER SUPPLY  UB-;6110.15  STRUCTURE FOR GENERATOR CIRCUIT BREAKER  UBX"
1.5.13.7,56837,"6110.10  STRUCTURE FOR GENERATOR/AUXILIARY TRANSFORMER  UBE/UBF",5121,"HK1003-Rev.0E-3",WBS,"56831",,,,100,Complete,,,,,,,,,0,,0,,0,,0,,,,"HK1003 -Blackpoint D2 - Rev.0E DD30092021;6000  BUILDING + STRUCTURES;6110  STRUCTURES FOR POWER SUBMISSION + AUX. POWER SUPPLY  UB-"
1.5.13.7.1,56840,"6110.10.15  FENCING/FINISHING WORKS TRANSFORMER UBF/UBE",5121,"HK1003-Rev.0E-3",WBS,"56837",,,,,NotStart,,,,,,,,,,,,,,,,,,,"HK1003 -Blackpoint D2 - Rev.0E DD30092021;6000  BUILDING + STRUCTURES;6110  STRUCTURES FOR POWER SUBMISSION + AUX. POWER SUPPLY  UB-;6110.10  STRUCTURE FOR GENERATOR/AUXILIARY TRANSFORMER  UBE/UBF"
1.5.13.7.2,56839,"6110.10.10  STEEL STRUCTURE TRANSFORMERS UBF/UBE",5121,"HK1003-Rev.0E-3",WBS,"56837",,,,,NotStart,,,,,,,,,,,,,,,,,,,"HK1003 -Blackpoint D2 - Rev.0E DD30092021;6000  BUILDING + STRUCTURES;6110  STRUCTURES FOR POWER SUBMISSION + AUX. POWER SUPPLY  UB-;6110.10  STRUCTURE FOR GENERATOR/AUXILIARY TRANSFORMER  UBE/UBF"
1.5.13.7.3,56838,"6110.10.05  FOUNDATION TRANSFORMERS UBF/UBE",5121,"HK1003-Rev.0E-3",WBS,"56837",,,,,NotStart,,,,,,,,,,,,,,,,,,,"HK1003 -Blackpoint D2 - Rev.0E DD30092021;6000  BUILDING + STRUCTURES;6110  STRUCTURES FOR POWER SUBMISSION + AUX. POWER SUPPLY  UB-;6110.10  STRUCTURE FOR GENERATOR/AUXILIARY TRANSFORMER  UBE/UBF"
1.5.13.8,56832,"6110.05  POWER CONTROL CENTERS (PCC)  UBA",5121,"HK1003-Rev.0E-3",WBS,"56831",,,,100,Complete,,,,,,,,,0,,0,,0,,0,,,,"HK1003 -Blackpoint D2 - Rev.0E DD30092021;6000  BUILDING + STRUCTURES;6110  STRUCTURES FOR POWER SUBMISSION + AUX. POWER SUPPLY  UB-"
1.5.13.8.1,56836,"6110.05.20  STEEL STRUCTURE FOR PCC UBA81",5121,"HK1003-Rev.0E-3",WBS,"56832",,,,,NotStart,,,,,,,,,,,,,,,,,,,"HK1003 -Blackpoint D2 - Rev.0E DD30092021;6000  BUILDING + STRUCTURES;6110  STRUCTURES FOR POWER SUBMISSION + AUX. POWER SUPPLY  UB-;6110.05  POWER CONTROL CENTERS (PCC)  UBA"
1.5.13.8.2,56835,"6110.05.15  CONCRETE STRUCTURE FOR PCC UBA81",5121,"HK1003-Rev.0E-3",WBS,"56832",,,,,NotStart,,,,,,,,,,,,,,,,,,,"HK1003 -Blackpoint D2 - Rev.0E DD30092021;6000  BUILDING + STRUCTURES;6110  STRUCTURES FOR POWER SUBMISSION + AUX. POWER SUPPLY  UB-;6110.05  POWER CONTROL CENTERS (PCC)  UBA"
1.5.13.8.3,56834,"6110.05.10  STEEL STRUCTURE PCC  UBA61,63,65+66",5121,"HK1003-Rev.0E-3",WBS,"56832",,,,,NotStart,,,,,,,,,,,,,,,,,,,"HK1003 -Blackpoint D2 - Rev.0E DD30092021;6000  BUILDING + STRUCTURES;6110  STRUCTURES FOR POWER SUBMISSION + AUX. POWER SUPPLY  UB-;6110.05  POWER CONTROL CENTERS (PCC)  UBA"
1.5.13.8.4,56833,"6110.05.05  CONCRETE STRUCTURE FOR PCCs  UBA61,63,65;66 + UBD",5121,"HK1003-Rev.0E-3",WBS,"56832",,,,,NotStart,,,,,,,,,,,,,,,,,,,"HK1003 -Blackpoint D2 - Rev.0E DD30092021;6000  BUILDING + STRUCTURES;6110  STRUCTURES FOR POWER SUBMISSION + AUX. POWER SUPPLY  UB-;6110.05  POWER CONTROL CENTERS (PCC)  UBA"
1.5.14,56826,"6101  GRID + DISTRIBUTION SYSTEM  UA-",5121,"HK1003-Rev.0E-3",WBS,"56819",,,,100,Complete,,,,,,,,,0,,0,,0,,0,,,,"HK1003 -Blackpoint D2 - Rev.0E DD30092021;6000  BUILDING + STRUCTURES"
1.5.14.1,56828,"6101.10  STRUCTURES FOR GRID + DISTRIBUTION SYSTEM  UA-",5121,"HK1003-Rev.0E-3",WBS,"56826",,,,100,Complete,,,,,,,,,0,,0,,0,,0,,,,"HK1003 -Blackpoint D2 - Rev.0E DD30092021;6000  BUILDING + STRUCTURES;6101  GRID + DISTRIBUTION SYSTEM  UA-"
1.5.14.1.1,56830,"6101.10.10  FENCING/FINISHING WORKS GRID+DISTRIBUTION SYSTEMS  UAA",5121,"HK1003-Rev.0E-3",WBS,"56828",,,,,NotStart,,,,,,,,,,,,,,,,,,,"HK1003 -Blackpoint D2 - Rev.0E DD30092021;6000  BUILDING + STRUCTURES;6101  GRID + DISTRIBUTION SYSTEM  UA-;6101.10  STRUCTURES FOR GRID + DISTRIBUTION SYSTEM  UA-"
1.5.14.1.2,56829,"6101.10.05  CONCRETE STRUCTURE GRID+DISTRIBUTION SYSTEMS  UAA",5121,"HK1003-Rev.0E-3",WBS,"56828",,,,,NotStart,,,,,,,,,,,,,,,,,,,"HK1003 -Blackpoint D2 - Rev.0E DD30092021;6000  BUILDING + STRUCTURES;6101  GRID + DISTRIBUTION SYSTEM  UA-;6101.10  STRUCTURES FOR GRID + DISTRIBUTION SYSTEM  UA-"
1.5.14.2,56827,"6101.05  PILING DESIGN SWITCHYARD AERA",5121,"HK1003-Rev.0E-3",WBS,"56826",,,,,NotStart,,,,,,,,,,,,,,,,,,,"HK1003 -Blackpoint D2 - Rev.0E DD30092021;6000  BUILDING + STRUCTURES;6101  GRID + DISTRIBUTION SYSTEM  UA-"
1.5.15,56820,"6000  GENERAL CIVIL ACTIVITIES",5121,"HK1003-Rev.0E-3",WBS,"56819",,,,100,Complete,,,,,,,,,0,,0,,0,,0,,,,"HK1003 -Blackpoint D2 - Rev.0E DD30092021;6000  BUILDING + STRUCTURES"
1.5.15.1,56824,"6000.20  PILING",5121,"HK1003-Rev.0E-3",WBS,"56820",,,,100,Complete,,,,,,,,,0,,0,,0,,0,,,,"HK1003 -Blackpoint D2 - Rev.0E DD30092021;6000  BUILDING + STRUCTURES;6000  GENERAL CIVIL ACTIVITIES"
1.5.15.1.1,56825,"6000.20.05  TEST PILING / PILING WORKS",5121,"HK1003-Rev.0E-3",WBS,"56824",,,,,NotStart,,,,,,,,,,,,,,,,,,,"HK1003 -Blackpoint D2 - Rev.0E DD30092021;6000  BUILDING + STRUCTURES;6000  GENERAL CIVIL ACTIVITIES;6000.20  PILING"
1.5.15.2,56823,"6000.15  SOIL INVESTIGATION",5121,"HK1003-Rev.0E-3",WBS,"56820",,,,,NotStart,,,,,,,,,,,,,,,,,,,"HK1003 -Blackpoint D2 - Rev.0E DD30092021;6000  BUILDING + STRUCTURES;6000  GENERAL CIVIL ACTIVITIES"
1.5.15.3,56822,"6000.10  TOPOGRAPHICAL SURVEY",5121,"HK1003-Rev.0E-3",WBS,"56820",,,,,NotStart,,,,,,,,,,,,,,,,,,,"HK1003 -Blackpoint D2 - Rev.0E DD30092021;6000  BUILDING + STRUCTURES;6000  GENERAL CIVIL ACTIVITIES"
1.5.15.4,56821,"6000.05  OVERALL BASIC DESIGN",5121,"HK1003-Rev.0E-3",WBS,"56820",,,,,NotStart,,,,,,,,,,,,,,,,,,,"HK1003 -Blackpoint D2 - Rev.0E DD30092021;6000  BUILDING + STRUCTURES;6000  GENERAL CIVIL ACTIVITIES"
1.6,56787,"5000  HVAC, FIRE PROTECTION + CRANES",5121,"HK1003-Rev.0E-3",WBS,"55902",,,,100,Complete,,,,,,,,,0,,0,,0,,0,,,,"HK1003 -Blackpoint D2 - Rev.0E DD30092021"
1.6.1,56813,"5721  LIFTING EQUIPMENT + ELEVATORS  SM-",5121,"HK1003-Rev.0E-3",WBS,"56787",,,,100,Complete,,,,,,,,,0,,0,,0,,0,,,,"HK1003 -Blackpoint D2 - Rev.0E DD30092021;5000  HVAC, FIRE PROTECTION + CRANES"
1.6.1.1,56818,"5721.25  CRANE IN UEN  SME",5121,"HK1003-Rev.0E-3",WBS,"56813",,,,,NotStart,,,,,,,,,,,,,,,,,,,"HK1003 -Blackpoint D2 - Rev.0E DD30092021;5000  HVAC, FIRE PROTECTION + CRANES;5721  LIFTING EQUIPMENT + ELEVATORS  SM-"
1.6.1.2,56817,"5721.20  CRANE IN ULA  SML",5121,"HK1003-Rev.0E-3",WBS,"56813",,,,,NotStart,,,,,,,,,,,,,,,,,,,"HK1003 -Blackpoint D2 - Rev.0E DD30092021;5000  HVAC, FIRE PROTECTION + CRANES;5721  LIFTING EQUIPMENT + ELEVATORS  SM-"
1.6.1.3,56816,"5721.15  CRANE IN UST  SMS",5121,"HK1003-Rev.0E-3",WBS,"56813",,,,,NotStart,,,,,,,,,,,,,,,,,,,"HK1003 -Blackpoint D2 - Rev.0E DD30092021;5000  HVAC, FIRE PROTECTION + CRANES;5721  LIFTING EQUIPMENT + ELEVATORS  SM-"
1.6.1.4,56815,"5721.10  CRANE IN UMC  SMM03",5121,"HK1003-Rev.0E-3",WBS,"56813",,,,,NotStart,,,,,,,,,,,,,,,,,,,"HK1003 -Blackpoint D2 - Rev.0E DD30092021;5000  HVAC, FIRE PROTECTION + CRANES;5721  LIFTING EQUIPMENT + ELEVATORS  SM-"
1.6.1.5,56814,"5721.05  CRANE IN UMC  SMM01/02",5121,"HK1003-Rev.0E-3",WBS,"56813",,,,,NotStart,,,,,,,,,,,,,,,,,,,"HK1003 -Blackpoint D2 - Rev.0E DD30092021;5000  HVAC, FIRE PROTECTION + CRANES;5721  LIFTING EQUIPMENT + ELEVATORS  SM-"
1.6.2,56801,"5631  HVAC SYSTEMS  SA-/SB-",5121,"HK1003-Rev.0E-3",WBS,"56787",,,,100,Complete,,,,,,,,,0,,0,,0,,0,,,,"HK1003 -Blackpoint D2 - Rev.0E DD30092021;5000  HVAC, FIRE PROTECTION + CRANES"
1.6.2.1,56812,"5631.50  HVAC SYSTEM HEATING SKID SBA",5121,"HK1003-Rev.0E-3",WBS,"56801",,,,,NotStart,,,,,,,,,,,,,,,,,,,"HK1003 -Blackpoint D2 - Rev.0E DD30092021;5000  HVAC, FIRE PROTECTION + CRANES;5631  HVAC SYSTEMS  SA-/SB-"
1.6.2.2,56811,"5631.45  HVAC SYSTEM IN UMX  SAX",5121,"HK1003-Rev.0E-3",WBS,"56801",,,,,NotStart,,,,,,,,,,,,,,,,,,,"HK1003 -Blackpoint D2 - Rev.0E DD30092021;5000  HVAC, FIRE PROTECTION + CRANES;5631  HVAC SYSTEMS  SA-/SB-"
1.6.2.3,56810,"5631.40  HVAC SYSTEM IN ULA  SAL",5121,"HK1003-Rev.0E-3",WBS,"56801",,,,,NotStart,,,,,,,,,,,,,,,,,,,"HK1003 -Blackpoint D2 - Rev.0E DD30092021;5000  HVAC, FIRE PROTECTION + CRANES;5631  HVAC SYSTEMS  SA-/SB-"
1.6.2.4,56809,"5631.35  HVAC SYSTEM IN UHA  SAH",5121,"HK1003-Rev.0E-3",WBS,"56801",,,,,NotStart,,,,,,,,,,,,,,,,,,,"HK1003 -Blackpoint D2 - Rev.0E DD30092021;5000  HVAC, FIRE PROTECTION + CRANES;5631  HVAC SYSTEMS  SA-/SB-"
1.6.2.5,56808,"5631.30  HVAC SYSTEM IN UGJ  SA/SB",5121,"HK1003-Rev.0E-3",WBS,"56801",,,,,NotStart,,,,,,,,,,,,,,,,,,,"HK1003 -Blackpoint D2 - Rev.0E DD30092021;5000  HVAC, FIRE PROTECTION + CRANES;5631  HVAC SYSTEMS  SA-/SB-"
1.6.2.6,56807,"5631.25  HVAC SYSTEM IN UYE  SA/SB",5121,"HK1003-Rev.0E-3",WBS,"56801",,,,,NotStart,,,,,,,,,,,,,,,,,,,"HK1003 -Blackpoint D2 - Rev.0E DD30092021;5000  HVAC, FIRE PROTECTION + CRANES;5631  HVAC SYSTEMS  SA-/SB-"
1.6.2.7,56806,"5631.20  HVAC SYSTEM IN UGD  SA/SB",5121,"HK1003-Rev.0E-3",WBS,"56801",,,,,NotStart,,,,,,,,,,,,,,,,,,,"HK1003 -Blackpoint D2 - Rev.0E DD30092021;5000  HVAC, FIRE PROTECTION + CRANES;5631  HVAC SYSTEMS  SA-/SB-"
1.6.2.8,56805,"5631.15  HVAC SYSTEM IN UST  SA/SB",5121,"HK1003-Rev.0E-3",WBS,"56801",,,,,NotStart,,,,,,,,,,,,,,,,,,,"HK1003 -Blackpoint D2 - Rev.0E DD30092021;5000  HVAC, FIRE PROTECTION + CRANES;5631  HVAC SYSTEMS  SA-/SB-"
1.6.2.9,56804,"5631.10  HVAC SYSTEM IN UCA/UYC  SA/SB",5121,"HK1003-Rev.0E-3",WBS,"56801",,,,,NotStart,,,,,,,,,,,,,,,,,,,"HK1003 -Blackpoint D2 - Rev.0E DD30092021;5000  HVAC, FIRE PROTECTION + CRANES;5631  HVAC SYSTEMS  SA-/SB-"
1.6.2.10,56803,"5631.05  HVAC SYSTEM IN UMC  SA/SB",5121,"HK1003-Rev.0E-3",WBS,"56801",,,,,NotStart,,,,,,,,,,,,,,,,,,,"HK1003 -Blackpoint D2 - Rev.0E DD30092021;5000  HVAC, FIRE PROTECTION + CRANES;5631  HVAC SYSTEMS  SA-/SB-"
1.6.2.11,56802,"5631.03  BASIC DESIGN HVAC SYSTEM  SA/SB",5121,"HK1003-Rev.0E-3",WBS,"56801",,,,,NotStart,,,,,,,,,,,,,,,,,,,"HK1003 -Blackpoint D2 - Rev.0E DD30092021;5000  HVAC, FIRE PROTECTION + CRANES;5631  HVAC SYSTEMS  SA-/SB-"
1.6.3,56788,"5511  FIRE FIGHTING EQUIPMENT  SG-",5121,"HK1003-Rev.0E-3",WBS,"56787",,,,100,Complete,,,,,,,,,0,,0,,0,,0,,,,"HK1003 -Blackpoint D2 - Rev.0E DD30092021;5000  HVAC, FIRE PROTECTION + CRANES"
1.6.3.1,56800,"5511.35  FIRE DETECTION SYSTEM  SGY",5121,"HK1003-Rev.0E-3",WBS,"56788",,,,,NotStart,,,,,,,,,,,,,,,,,,,"HK1003 -Blackpoint D2 - Rev.0E DD30092021;5000  HVAC, FIRE PROTECTION + CRANES;5511  FIRE FIGHTING EQUIPMENT  SG-"
1.6.3.2,56799,"5511.30  FIRE FIGHTING EXTINGUISHERS SGM",5121,"HK1003-Rev.0E-3",WBS,"56788",,,,,NotStart,,,,,,,,,,,,,,,,,,,"HK1003 -Blackpoint D2 - Rev.0E DD30092021;5000  HVAC, FIRE PROTECTION + CRANES;5511  FIRE FIGHTING EQUIPMENT  SG-"
1.6.3.3,56798,"5511.25  FIRE FIGHTING CO2-SYSTEM  SGJ",5121,"HK1003-Rev.0E-3",WBS,"56788",,,,,NotStart,,,,,,,,,,,,,,,,,,,"HK1003 -Blackpoint D2 - Rev.0E DD30092021;5000  HVAC, FIRE PROTECTION + CRANES;5511  FIRE FIGHTING EQUIPMENT  SG-"
1.6.3.4,56797,"5511.22  FIRE FIGHTING FOAM SYSTEM  SGF",5121,"HK1003-Rev.0E-3",WBS,"56788",,,,,NotStart,,,,,,,,,,,,,,,,,,,"HK1003 -Blackpoint D2 - Rev.0E DD30092021;5000  HVAC, FIRE PROTECTION + CRANES;5511  FIRE FIGHTING EQUIPMENT  SG-"
1.6.3.5,56796,"5511.20  FIRE FIGHTING SPRINKLER SYSTEM  SGE",5121,"HK1003-Rev.0E-3",WBS,"56788",,,,,NotStart,,,,,,,,,,,,,,,,,,,"HK1003 -Blackpoint D2 - Rev.0E DD30092021;5000  HVAC, FIRE PROTECTION + CRANES;5511  FIRE FIGHTING EQUIPMENT  SG-"
1.6.3.6,56795,"5511.17  FIRE FIGHTING SYSTEM FOR BAT/BBT  SG",5121,"HK1003-Rev.0E-3",WBS,"56788",,,,,NotStart,,,,,,,,,,,,,,,,,,,"HK1003 -Blackpoint D2 - Rev.0E DD30092021;5000  HVAC, FIRE PROTECTION + CRANES;5511  FIRE FIGHTING EQUIPMENT  SG-"
1.6.3.7,56794,"5511.15  FIRE FIGHTING SPRAY DELUGE SYSTEM  SGC",5121,"HK1003-Rev.0E-3",WBS,"56788",,,,,NotStart,,,,,,,,,,,,,,,,,,,"HK1003 -Blackpoint D2 - Rev.0E DD30092021;5000  HVAC, FIRE PROTECTION + CRANES;5511  FIRE FIGHTING EQUIPMENT  SG-"
1.6.3.8,56793,"5511.13  FIRE FIGHTING SYSTEMS  SGC/SGE/SGF/SGJ",5121,"HK1003-Rev.0E-3",WBS,"56788",,,,,NotStart,,,,,,,,,,,,,,,,,,,"HK1003 -Blackpoint D2 - Rev.0E DD30092021;5000  HVAC, FIRE PROTECTION + CRANES;5511  FIRE FIGHTING EQUIPMENT  SG-"
1.6.3.9,56792,"5511.09  FIRE FIGHTING WATER RING MAIN (YARD)  SGA",5121,"HK1003-Rev.0E-3",WBS,"56788",,,,,NotStart,,,,,,,,,,,,,,,,,,,"HK1003 -Blackpoint D2 - Rev.0E DD30092021;5000  HVAC, FIRE PROTECTION + CRANES;5511  FIRE FIGHTING EQUIPMENT  SG-"
1.6.3.10,56791,"5511.07  FIRE FIGHTING SYSTEM INDOOR HYDRANTS  SGA",5121,"HK1003-Rev.0E-3",WBS,"56788",,,,,NotStart,,,,,,,,,,,,,,,,,,,"HK1003 -Blackpoint D2 - Rev.0E DD30092021;5000  HVAC, FIRE PROTECTION + CRANES;5511  FIRE FIGHTING EQUIPMENT  SG-"
1.6.3.11,56790,"5511.05  FIRE FIGHTING PUMP CONTAINER  SGA",5121,"HK1003-Rev.0E-3",WBS,"56788",,,,,NotStart,,,,,,,,,,,,,,,,,,,"HK1003 -Blackpoint D2 - Rev.0E DD30092021;5000  HVAC, FIRE PROTECTION + CRANES;5511  FIRE FIGHTING EQUIPMENT  SG-"
1.6.3.12,56789,"5511.02  GENERAL ACTIVITIES FIRE FIGHTING SYSTEM  SG",5121,"HK1003-Rev.0E-3",WBS,"56788",,,,,NotStart,,,,,,,,,,,,,,,,,,,"HK1003 -Blackpoint D2 - Rev.0E DD30092021;5000  HVAC, FIRE PROTECTION + CRANES;5511  FIRE FIGHTING EQUIPMENT  SG-"
1.7,56674,"4000  WATER STEAM CYCLE / TREATMENT / COOLING SYSTEMS",5121,"HK1003-Rev.0E-3",WBS,"55902",,,,100,Complete,,,,,,,,,0,,0,,0,,0,,,,"HK1003 -Blackpoint D2 - Rev.0E DD30092021"
1.7.1,56786,"4961  LABORATORY EQUIPMENT  STG",5121,"HK1003-Rev.0E-3",WBS,"56674",,,,,NotStart,,,,,,,,,,,,,,,,,,,"HK1003 -Blackpoint D2 - Rev.0E DD30092021;4000  WATER STEAM CYCLE / TREATMENT / COOLING SYSTEMS"
1.7.2,56785,"4801  VALVES FOR ALL SYSTEMS",5121,"HK1003-Rev.0E-3",WBS,"56674",,,,,NotStart,,,,,,,,,,,,,,,,,,,"HK1003 -Blackpoint D2 - Rev.0E DD30092021;4000  WATER STEAM CYCLE / TREATMENT / COOLING SYSTEMS"
1.7.3,56728,"4711  PIPING",5121,"HK1003-Rev.0E-3",WBS,"56674",,,,100,Complete,,,,,,,,,0,,0,,0,,0,,,,"HK1003 -Blackpoint D2 - Rev.0E DD30092021;4000  WATER STEAM CYCLE / TREATMENT / COOLING SYSTEMS"
1.7.3.1,56784,"4711.70  TEMPORARY PIPES FOR ACID CLEANING AND STEAM BLOWING",5121,"HK1003-Rev.0E-3",WBS,"56728",,,,,NotStart,,,,,,,,,,,,,,,,,,,"HK1003 -Blackpoint D2 - Rev.0E DD30092021;4000  WATER STEAM CYCLE / TREATMENT / COOLING SYSTEMS;4711  PIPING"
1.7.3.2,56783,"4711.65  PIPING AUXILIARY SYSTEMS (DOSING/SAMPLING)  QC/QU",5121,"HK1003-Rev.0E-3",WBS,"56728",,,,,NotStart,,,,,,,,,,,,,,,,,,,"HK1003 -Blackpoint D2 - Rev.0E DD30092021;4000  WATER STEAM CYCLE / TREATMENT / COOLING SYSTEMS;4711  PIPING"
1.7.3.3,56782,"4711.60  PIPING CENTRAL CONTROL AIR DISTRIBUTION SYSTEM  QFB",5121,"HK1003-Rev.0E-3",WBS,"56728",,,,,NotStart,,,,,,,,,,,,,,,,,,,"HK1003 -Blackpoint D2 - Rev.0E DD30092021;4000  WATER STEAM CYCLE / TREATMENT / COOLING SYSTEMS;4711  PIPING"
1.7.3.4,56781,"4711.55  PIPING COMPRESSED AIR DISTRIBUTION SYSTEM  SCB",5121,"HK1003-Rev.0E-3",WBS,"56728",,,,,NotStart,,,,,,,,,,,,,,,,,,,"HK1003 -Blackpoint D2 - Rev.0E DD30092021;4000  WATER STEAM CYCLE / TREATMENT / COOLING SYSTEMS;4711  PIPING"
1.7.3.5,56775,"4711.50  PIPING FOR WATER SUPPLY AND DISPOSAL SYSTEMS  G--",5121,"HK1003-Rev.0E-3",WBS,"56728",,,,100,Complete,,,,,,,,,0,,0,,0,,0,,,,"HK1003 -Blackpoint D2 - Rev.0E DD30092021;4000  WATER STEAM CYCLE / TREATMENT / COOLING SYSTEMS;4711  PIPING"
1.7.3.5.1,56780,"4711.50.25  PIPING SERVICE WATER DISTRIBUTION SYSTEM  GHD",5121,"HK1003-Rev.0E-3",WBS,"56775",,,,,NotStart,,,,,,,,,,,,,,,,,,,"HK1003 -Blackpoint D2 - Rev.0E DD30092021;4000  WATER STEAM CYCLE / TREATMENT / COOLING SYSTEMS;4711  PIPING;4711.50  PIPING FOR WATER SUPPLY AND DISPOSAL SYSTEMS  G--"
1.7.3.5.2,56779,"4711.50.20  PIPING PLANT DRAINAGE SYSTEM  GM",5121,"HK1003-Rev.0E-3",WBS,"56775",,,,,NotStart,,,,,,,,,,,,,,,,,,,"HK1003 -Blackpoint D2 - Rev.0E DD30092021;4000  WATER STEAM CYCLE / TREATMENT / COOLING SYSTEMS;4711  PIPING;4711.50  PIPING FOR WATER SUPPLY AND DISPOSAL SYSTEMS  G--"
1.7.3.5.3,56778,"4711.50.15  PIPING POTABLE WATER DISTRIBUTION SYSTEM  GKB",5121,"HK1003-Rev.0E-3",WBS,"56775",,,,,NotStart,,,,,,,,,,,,,,,,,,,"HK1003 -Blackpoint D2 - Rev.0E DD30092021;4000  WATER STEAM CYCLE / TREATMENT / COOLING SYSTEMS;4711  PIPING;4711.50  PIPING FOR WATER SUPPLY AND DISPOSAL SYSTEMS  G--"
1.7.3.5.4,56777,"4711.50.10  PIPING DEMINERALIZED WATER DISTRIBUTION SYSTEM  GHC",5121,"HK1003-Rev.0E-3",WBS,"56775",,,,,NotStart,,,,,,,,,,,,,,,,,,,"HK1003 -Blackpoint D2 - Rev.0E DD30092021;4000  WATER STEAM CYCLE / TREATMENT / COOLING SYSTEMS;4711  PIPING;4711.50  PIPING FOR WATER SUPPLY AND DISPOSAL SYSTEMS  G--"
1.7.3.5.5,56776,"4711.50.05  PIPING RAW WATER SUPPLY SYSTEM  GA",5121,"HK1003-Rev.0E-3",WBS,"56775",,,,,NotStart,,,,,,,,,,,,,,,,,,,"HK1003 -Blackpoint D2 - Rev.0E DD30092021;4000  WATER STEAM CYCLE / TREATMENT / COOLING SYSTEMS;4711  PIPING;4711.50  PIPING FOR WATER SUPPLY AND DISPOSAL SYSTEMS  G--"
1.7.3.6,56767,"4711.45  PIPING FOR COOLING WATER SYSTEMS  P--",5121,"HK1003-Rev.0E-3",WBS,"56728",,,,100,Complete,,,,,,,,,0,,0,,0,,0,,,,"HK1003 -Blackpoint D2 - Rev.0E DD30092021;4000  WATER STEAM CYCLE / TREATMENT / COOLING SYSTEMS;4711  PIPING"
1.7.3.6.1,56774,"4711.45.35  PIPING MAKEUP WATER SYSTEM  PAR",5121,"HK1003-Rev.0E-3",WBS,"56767",,,,,NotStart,,,,,,,,,,,,,,,,,,,"HK1003 -Blackpoint D2 - Rev.0E DD30092021;4000  WATER STEAM CYCLE / TREATMENT / COOLING SYSTEMS;4711  PIPING;4711.45  PIPING FOR COOLING WATER SYSTEMS  P--"
1.7.3.6.2,56773,"4711.45.30  PIPING CW BIOCIDE SYSTEM (ONLY BY SEAWATER)  PUN",5121,"HK1003-Rev.0E-3",WBS,"56767",,,,,NotStart,,,,,,,,,,,,,,,,,,,"HK1003 -Blackpoint D2 - Rev.0E DD30092021;4000  WATER STEAM CYCLE / TREATMENT / COOLING SYSTEMS;4711  PIPING;4711.45  PIPING FOR COOLING WATER SYSTEMS  P--"
1.7.3.6.3,56772,"4711.45.25  PIPING CIRCULATING WATER TREATMENT SYSTEM  PB",5121,"HK1003-Rev.0E-3",WBS,"56767",,,,,NotStart,,,,,,,,,,,,,,,,,,,"HK1003 -Blackpoint D2 - Rev.0E DD30092021;4000  WATER STEAM CYCLE / TREATMENT / COOLING SYSTEMS;4711  PIPING;4711.45  PIPING FOR COOLING WATER SYSTEMS  P--"
1.7.3.6.4,56771,"4711.45.20  PIPING CONDENSER CLEANING SYSTEM  PAH",5121,"HK1003-Rev.0E-3",WBS,"56767",,,,,NotStart,,,,,,,,,,,,,,,,,,,"HK1003 -Blackpoint D2 - Rev.0E DD30092021;4000  WATER STEAM CYCLE / TREATMENT / COOLING SYSTEMS;4711  PIPING;4711.45  PIPING FOR COOLING WATER SYSTEMS  P--"
1.7.3.6.5,56770,"4711.45.15  PIPING CLOSED COOLING WATER SYSTEM  PGB",5121,"HK1003-Rev.0E-3",WBS,"56767",,,,,NotStart,,,,,,,,,,,,,,,,,,,"HK1003 -Blackpoint D2 - Rev.0E DD30092021;4000  WATER STEAM CYCLE / TREATMENT / COOLING SYSTEMS;4711  PIPING;4711.45  PIPING FOR COOLING WATER SYSTEMS  P--"
1.7.3.6.6,56769,"4711.45.10  PIPING SERVICE WATER SYSTEM  PCB",5121,"HK1003-Rev.0E-3",WBS,"56767",,,,,NotStart,,,,,,,,,,,,,,,,,,,"HK1003 -Blackpoint D2 - Rev.0E DD30092021;4000  WATER STEAM CYCLE / TREATMENT / COOLING SYSTEMS;4711  PIPING;4711.45  PIPING FOR COOLING WATER SYSTEMS  P--"
1.7.3.6.7,56768,"4711.45.07  PIPING CIRCULATING WATER SYSTEM TURBINE BUILDING  PAB",5121,"HK1003-Rev.0E-3",WBS,"56767",,,,,NotStart,,,,,,,,,,,,,,,,,,,"HK1003 -Blackpoint D2 - Rev.0E DD30092021;4000  WATER STEAM CYCLE / TREATMENT / COOLING SYSTEMS;4711  PIPING;4711.45  PIPING FOR COOLING WATER SYSTEMS  P--"
1.7.3.7,56752,"4711.40  PIPING FOR MAIN MACHINE SET SYSTEMS  M--",5121,"HK1003-Rev.0E-3",WBS,"56728",,,,100,Complete,,,,,,,,,0,,0,,0,,0,,,,"HK1003 -Blackpoint D2 - Rev.0E DD30092021;4000  WATER STEAM CYCLE / TREATMENT / COOLING SYSTEMS;4711  PIPING"
1.7.3.7.1,56766,"4711.35.65  PIPING ANTI-ICING  SYSTEM  MBL",5121,"HK1003-Rev.0E-3",WBS,"56752",,,,,NotStart,,,,,,,,,,,,,,,,,,,"HK1003 -Blackpoint D2 - Rev.0E DD30092021;4000  WATER STEAM CYCLE / TREATMENT / COOLING SYSTEMS;4711  PIPING;4711.40  PIPING FOR MAIN MACHINE SET SYSTEMS  M--"
1.7.3.7.2,56765,"4711.40.60  PIPING HYDRAULIC CLEARANCE OPTIMIZATION  MBA",5121,"HK1003-Rev.0E-3",WBS,"56752",,,,,NotStart,,,,,,,,,,,,,,,,,,,"HK1003 -Blackpoint D2 - Rev.0E DD30092021;4000  WATER STEAM CYCLE / TREATMENT / COOLING SYSTEMS;4711  PIPING;4711.40  PIPING FOR MAIN MACHINE SET SYSTEMS  M--"
1.7.3.7.3,56764,"4711.40.55  PIPING GAS TURBINE ADDITIV SYSTEM  MBU",5121,"HK1003-Rev.0E-3",WBS,"56752",,,,,NotStart,,,,,,,,,,,,,,,,,,,"HK1003 -Blackpoint D2 - Rev.0E DD30092021;4000  WATER STEAM CYCLE / TREATMENT / COOLING SYSTEMS;4711  PIPING;4711.40  PIPING FOR MAIN MACHINE SET SYSTEMS  M--"
1.7.3.7.4,56763,"4711.40.50  PIPING GAS TURBINE IGNITION GAS SYSTEM  MBQ",5121,"HK1003-Rev.0E-3",WBS,"56752",,,,,NotStart,,,,,,,,,,,,,,,,,,,"HK1003 -Blackpoint D2 - Rev.0E DD30092021;4000  WATER STEAM CYCLE / TREATMENT / COOLING SYSTEMS;4711  PIPING;4711.40  PIPING FOR MAIN MACHINE SET SYSTEMS  M--"
1.7.3.7.5,56762,"4711.40.45  PIPING GAS TURBINE PLANT (BOP SCOPE)  MB",5121,"HK1003-Rev.0E-3",WBS,"56752",,,,,NotStart,,,,,,,,,,,,,,,,,,,"HK1003 -Blackpoint D2 - Rev.0E DD30092021;4000  WATER STEAM CYCLE / TREATMENT / COOLING SYSTEMS;4711  PIPING;4711.40  PIPING FOR MAIN MACHINE SET SYSTEMS  M--"
1.7.3.7.6,56761,"4711.40.42  PIPING CONDENSATION SYSTEM  MAG",5121,"HK1003-Rev.0E-3",WBS,"56752",,,,,NotStart,,,,,,,,,,,,,,,,,,,"HK1003 -Blackpoint D2 - Rev.0E DD30092021;4000  WATER STEAM CYCLE / TREATMENT / COOLING SYSTEMS;4711  PIPING;4711.40  PIPING FOR MAIN MACHINE SET SYSTEMS  M--"
1.7.3.7.7,56760,"4711.40.40  PIPING FOR HP/IP/LP-TURBINE  MAA/B/C",5121,"HK1003-Rev.0E-3",WBS,"56752",,,,,NotStart,,,,,,,,,,,,,,,,,,,"HK1003 -Blackpoint D2 - Rev.0E DD30092021;4000  WATER STEAM CYCLE / TREATMENT / COOLING SYSTEMS;4711  PIPING;4711.40  PIPING FOR MAIN MACHINE SET SYSTEMS  M--"
1.7.3.7.8,56759,"4711.40.35  PIPING FOR AIR REMOVAL SYSTEM  MAJ",5121,"HK1003-Rev.0E-3",WBS,"56752",,,,,NotStart,,,,,,,,,,,,,,,,,,,"HK1003 -Blackpoint D2 - Rev.0E DD30092021;4000  WATER STEAM CYCLE / TREATMENT / COOLING SYSTEMS;4711  PIPING;4711.40  PIPING FOR MAIN MACHINE SET SYSTEMS  M--"
1.7.3.7.9,56758,"4711.40.30  PIPING FOR CONTROL OIL SYSTEM  MAX",5121,"HK1003-Rev.0E-3",WBS,"56752",,,,,NotStart,,,,,,,,,,,,,,,,,,,"HK1003 -Blackpoint D2 - Rev.0E DD30092021;4000  WATER STEAM CYCLE / TREATMENT / COOLING SYSTEMS;4711  PIPING;4711.40  PIPING FOR MAIN MACHINE SET SYSTEMS  M--"
1.7.3.7.10,56757,"4711.40.25  PIPING FOR TURBINE DRAIN AND LEAK-OFF SYSTEM  MAL/MAM",5121,"HK1003-Rev.0E-3",WBS,"56752",,,,,NotStart,,,,,,,,,,,,,,,,,,,"HK1003 -Blackpoint D2 - Rev.0E DD30092021;4000  WATER STEAM CYCLE / TREATMENT / COOLING SYSTEMS;4711  PIPING;4711.40  PIPING FOR MAIN MACHINE SET SYSTEMS  M--"
1.7.3.7.11,56756,"4711.40.20  PIPING FOR GLAND STEAM SYSTEM  MAW",5121,"HK1003-Rev.0E-3",WBS,"56752",,,,,NotStart,,,,,,,,,,,,,,,,,,,"HK1003 -Blackpoint D2 - Rev.0E DD30092021;4000  WATER STEAM CYCLE / TREATMENT / COOLING SYSTEMS;4711  PIPING;4711.40  PIPING FOR MAIN MACHINE SET SYSTEMS  M--"
1.7.3.7.12,56755,"4711.40.15  PIPING FOR LUBRICANT SUPPLY SYSTEM  MAV",5121,"HK1003-Rev.0E-3",WBS,"56752",,,,,NotStart,,,,,,,,,,,,,,,,,,,"HK1003 -Blackpoint D2 - Rev.0E DD30092021;4000  WATER STEAM CYCLE / TREATMENT / COOLING SYSTEMS;4711  PIPING;4711.40  PIPING FOR MAIN MACHINE SET SYSTEMS  M--"
1.7.3.7.13,56754,"4711.40.10  PIPING FOR LP TURBINE BYPASS STATION  MAN",5121,"HK1003-Rev.0E-3",WBS,"56752",,,,,NotStart,,,,,,,,,,,,,,,,,,,"HK1003 -Blackpoint D2 - Rev.0E DD30092021;4000  WATER STEAM CYCLE / TREATMENT / COOLING SYSTEMS;4711  PIPING;4711.40  PIPING FOR MAIN MACHINE SET SYSTEMS  M--"
1.7.3.7.14,56753,"4711.40.05  PIPING FOR GENERATOR PLANT  MK-",5121,"HK1003-Rev.0E-3",WBS,"56752",,,,,NotStart,,,,,,,,,,,,,,,,,,,"HK1003 -Blackpoint D2 - Rev.0E DD30092021;4000  WATER STEAM CYCLE / TREATMENT / COOLING SYSTEMS;4711  PIPING;4711.40  PIPING FOR MAIN MACHINE SET SYSTEMS  M--"
1.7.3.8,56746,"4711.35  PIPING CONDENSATE SYSTEMS  LC-",5121,"HK1003-Rev.0E-3",WBS,"56728",,,,100,Complete,,,,,,,,,0,,0,,0,,0,,,,"HK1003 -Blackpoint D2 - Rev.0E DD30092021;4000  WATER STEAM CYCLE / TREATMENT / COOLING SYSTEMS;4711  PIPING"
1.7.3.8.1,56751,"4711.35.25  PIPING CONDENSATE POLISHING SYSTEM  LDK",5121,"HK1003-Rev.0E-3",WBS,"56746",,,,,NotStart,,,,,,,,,,,,,,,,,,,"HK1003 -Blackpoint D2 - Rev.0E DD30092021;4000  WATER STEAM CYCLE / TREATMENT / COOLING SYSTEMS;4711  PIPING;4711.35  PIPING CONDENSATE SYSTEMS  LC-"
1.7.3.8.2,56750,"4711.35.20  PIPING SEALING AND COOLING DRAINS SYSTEM  LCW",5121,"HK1003-Rev.0E-3",WBS,"56746",,,,,NotStart,,,,,,,,,,,,,,,,,,,"HK1003 -Blackpoint D2 - Rev.0E DD30092021;4000  WATER STEAM CYCLE / TREATMENT / COOLING SYSTEMS;4711  PIPING;4711.35  PIPING CONDENSATE SYSTEMS  LC-"
1.7.3.8.3,56749,"4711.35.15  PIPING STEAM GENERATOR DRAINS SYSTEM  LCL",5121,"HK1003-Rev.0E-3",WBS,"56746",,,,,NotStart,,,,,,,,,,,,,,,,,,,"HK1003 -Blackpoint D2 - Rev.0E DD30092021;4000  WATER STEAM CYCLE / TREATMENT / COOLING SYSTEMS;4711  PIPING;4711.35  PIPING CONDENSATE SYSTEMS  LC-"
1.7.3.8.4,56748,"4711.35.10  PIPING CLEAN DRAINS SYSTEM  LCM",5121,"HK1003-Rev.0E-3",WBS,"56746",,,,,NotStart,,,,,,,,,,,,,,,,,,,"HK1003 -Blackpoint D2 - Rev.0E DD30092021;4000  WATER STEAM CYCLE / TREATMENT / COOLING SYSTEMS;4711  PIPING;4711.35  PIPING CONDENSATE SYSTEMS  LC-"
1.7.3.8.5,56747,"4711.35.05  PIPING MAIN CONDENSATE SYSTEM  LCA",5121,"HK1003-Rev.0E-3",WBS,"56746",,,,,NotStart,,,,,,,,,,,,,,,,,,,"HK1003 -Blackpoint D2 - Rev.0E DD30092021;4000  WATER STEAM CYCLE / TREATMENT / COOLING SYSTEMS;4711  PIPING;4711.35  PIPING CONDENSATE SYSTEMS  LC-"
1.7.3.9,56745,"4711.30  PIPING FEEDWATER SYSTEM  LAB",5121,"HK1003-Rev.0E-3",WBS,"56728",,,,,NotStart,,,,,,,,,,,,,,,,,,,"HK1003 -Blackpoint D2 - Rev.0E DD30092021;4000  WATER STEAM CYCLE / TREATMENT / COOLING SYSTEMS;4711  PIPING"
1.7.3.10,56739,"4711.25  PIPING FOR STEAM SYSTEMS  LB-",5121,"HK1003-Rev.0E-3",WBS,"56728",,,,100,Complete,,,,,,,,,0,,0,,0,,0,,,,"HK1003 -Blackpoint D2 - Rev.0E DD30092021;4000  WATER STEAM CYCLE / TREATMENT / COOLING SYSTEMS;4711  PIPING"
1.7.3.10.1,56744,"4711.25.25  PIPING AUXILIARY STEAM SYSTEM  LBG",5121,"HK1003-Rev.0E-3",WBS,"56739",,,,,NotStart,,,,,,,,,,,,,,,,,,,"HK1003 -Blackpoint D2 - Rev.0E DD30092021;4000  WATER STEAM CYCLE / TREATMENT / COOLING SYSTEMS;4711  PIPING;4711.25  PIPING FOR STEAM SYSTEMS  LB-"
1.7.3.10.2,56743,"4711.25.20  PIPING IP COLD REHEAT SYSTEM  LBC",5121,"HK1003-Rev.0E-3",WBS,"56739",,,,,NotStart,,,,,,,,,,,,,,,,,,,"HK1003 -Blackpoint D2 - Rev.0E DD30092021;4000  WATER STEAM CYCLE / TREATMENT / COOLING SYSTEMS;4711  PIPING;4711.25  PIPING FOR STEAM SYSTEMS  LB-"
1.7.3.10.3,56742,"4711.25.15  PIPING IP HOT REHEAT SYSTEM  LBB",5121,"HK1003-Rev.0E-3",WBS,"56739",,,,,NotStart,,,,,,,,,,,,,,,,,,,"HK1003 -Blackpoint D2 - Rev.0E DD30092021;4000  WATER STEAM CYCLE / TREATMENT / COOLING SYSTEMS;4711  PIPING;4711.25  PIPING FOR STEAM SYSTEMS  LB-"
1.7.3.10.4,56741,"4711.25.10  PIPING LP MAIN STEAM SYSTEM  LBA80",5121,"HK1003-Rev.0E-3",WBS,"56739",,,,,NotStart,,,,,,,,,,,,,,,,,,,"HK1003 -Blackpoint D2 - Rev.0E DD30092021;4000  WATER STEAM CYCLE / TREATMENT / COOLING SYSTEMS;4711  PIPING;4711.25  PIPING FOR STEAM SYSTEMS  LB-"
1.7.3.10.5,56740,"4711.25.05  PIPING HP MAIN STEAM SYSTEM  LBA10",5121,"HK1003-Rev.0E-3",WBS,"56739",,,,,NotStart,,,,,,,,,,,,,,,,,,,"HK1003 -Blackpoint D2 - Rev.0E DD30092021;4000  WATER STEAM CYCLE / TREATMENT / COOLING SYSTEMS;4711  PIPING;4711.25  PIPING FOR STEAM SYSTEMS  LB-"
1.7.3.11,56735,"4711.20  PIPING FOR FUEL SUPPLY SYSTEMS  E--",5121,"HK1003-Rev.0E-3",WBS,"56728",,,,100,Complete,,,,,,,,,0,,0,,0,,0,,,,"HK1003 -Blackpoint D2 - Rev.0E DD30092021;4000  WATER STEAM CYCLE / TREATMENT / COOLING SYSTEMS;4711  PIPING"
1.7.3.11.1,56738,"4711.20.10  PIPING FUEL OIL SUPPLY SYSTEM  EGD",5121,"HK1003-Rev.0E-3",WBS,"56735",,,,,NotStart,,,,,,,,,,,,,,,,,,,"HK1003 -Blackpoint D2 - Rev.0E DD30092021;4000  WATER STEAM CYCLE / TREATMENT / COOLING SYSTEMS;4711  PIPING;4711.20  PIPING FOR FUEL SUPPLY SYSTEMS  E--"
1.7.3.11.2,56737,"4711.20.07  PIPING FUEL GAS PREHEATING SYSTEM  EKT",5121,"HK1003-Rev.0E-3",WBS,"56735",,,,,NotStart,,,,,,,,,,,,,,,,,,,"HK1003 -Blackpoint D2 - Rev.0E DD30092021;4000  WATER STEAM CYCLE / TREATMENT / COOLING SYSTEMS;4711  PIPING;4711.20  PIPING FOR FUEL SUPPLY SYSTEMS  E--"
1.7.3.11.3,56736,"4711.20.05  PIPING FUEL GAS SUPPLY SYSTEM  EKG",5121,"HK1003-Rev.0E-3",WBS,"56735",,,,,NotStart,,,,,,,,,,,,,,,,,,,"HK1003 -Blackpoint D2 - Rev.0E DD30092021;4000  WATER STEAM CYCLE / TREATMENT / COOLING SYSTEMS;4711  PIPING;4711.20  PIPING FOR FUEL SUPPLY SYSTEMS  E--"
1.7.3.12,56734,"4711.17  START ERECTION PIPING SYSTEMS",5121,"HK1003-Rev.0E-3",WBS,"56728",,,,,NotStart,,,,,,,,,,,,,,,,,,,"HK1003 -Blackpoint D2 - Rev.0E DD30092021;4000  WATER STEAM CYCLE / TREATMENT / COOLING SYSTEMS;4711  PIPING"
1.7.3.13,56733,"4711.15  SUMMARY  ERECTION PIPING SYSTEMS",5121,"HK1003-Rev.0E-3",WBS,"56728",,,,,NotStart,,,,,,,,,,,,,,,,,,,"HK1003 -Blackpoint D2 - Rev.0E DD30092021;4000  WATER STEAM CYCLE / TREATMENT / COOLING SYSTEMS;4711  PIPING"
1.7.3.14,56730,"4711.10  ORDERING PIPING SYSTEMS",5121,"HK1003-Rev.0E-3",WBS,"56728",,,,100,Complete,,,,,,,,,0,,0,,0,,0,,,,"HK1003 -Blackpoint D2 - Rev.0E DD30092021;4000  WATER STEAM CYCLE / TREATMENT / COOLING SYSTEMS;4711  PIPING"
1.7.3.14.1,56732,"4711.10.10  SUPPLY PIPING (ALLOYED MATERIAL)",5121,"HK1003-Rev.0E-3",WBS,"56730",,,,,NotStart,,,,,,,,,,,,,,,,,,,"HK1003 -Blackpoint D2 - Rev.0E DD30092021;4000  WATER STEAM CYCLE / TREATMENT / COOLING SYSTEMS;4711  PIPING;4711.10  ORDERING PIPING SYSTEMS"
1.7.3.14.2,56731,"4711.10.05  SUPPLY PIPING & SUPPORT (ALL OTHER MATERIAL)",5121,"HK1003-Rev.0E-3",WBS,"56730",,,,,NotStart,,,,,,,,,,,,,,,,,,,"HK1003 -Blackpoint D2 - Rev.0E DD30092021;4000  WATER STEAM CYCLE / TREATMENT / COOLING SYSTEMS;4711  PIPING;4711.10  ORDERING PIPING SYSTEMS"
1.7.3.15,56729,"4711.05  BASIC DESIGN PIPING",5121,"HK1003-Rev.0E-3",WBS,"56728",,,,,NotStart,,,,,,,,,,,,,,,,,,,"HK1003 -Blackpoint D2 - Rev.0E DD30092021;4000  WATER STEAM CYCLE / TREATMENT / COOLING SYSTEMS;4711  PIPING"
1.7.4,56727,"4681  COMPRESSED AIR GENERATION SYSTEM  SCA",5121,"HK1003-Rev.0E-3",WBS,"56674",,,,,NotStart,,,,,,,,,,,,,,,,,,,"HK1003 -Blackpoint D2 - Rev.0E DD30092021;4000  WATER STEAM CYCLE / TREATMENT / COOLING SYSTEMS"
1.7.5,56713,"4606  AUXILIARY PUMPS  LCM/GHC/GM/PGB/PCB/LCL/MBU/LCN/LDK",5121,"HK1003-Rev.0E-3",WBS,"56674",,,,100,Complete,,,,,,,,,0,,0,,0,,0,,,,"HK1003 -Blackpoint D2 - Rev.0E DD30092021;4000  WATER STEAM CYCLE / TREATMENT / COOLING SYSTEMS"
1.7.5.1,56726,"4606.60  CONDENSATE POLISHING PUMP  LDK",5121,"HK1003-Rev.0E-3",WBS,"56713",,,,,NotStart,,,,,,,,,,,,,,,,,,,"HK1003 -Blackpoint D2 - Rev.0E DD30092021;4000  WATER STEAM CYCLE / TREATMENT / COOLING SYSTEMS;4606  AUXILIARY PUMPS  LCM/GHC/GM/PGB/PCB/LCL/MBU/LCN/LDK"
1.7.5.2,56725,"4606.55  PREHEATING CONDENSATE RETURN PUMP  LCN",5121,"HK1003-Rev.0E-3",WBS,"56713",,,,,NotStart,,,,,,,,,,,,,,,,,,,"HK1003 -Blackpoint D2 - Rev.0E DD30092021;4000  WATER STEAM CYCLE / TREATMENT / COOLING SYSTEMS;4606  AUXILIARY PUMPS  LCM/GHC/GM/PGB/PCB/LCL/MBU/LCN/LDK"
1.7.5.3,56724,"4606.50  AIR PREHEATER CIRCULATI0N PUMP SKID  MBL",5121,"HK1003-Rev.0E-3",WBS,"56713",,,,,NotStart,,,,,,,,,,,,,,,,,,,"HK1003 -Blackpoint D2 - Rev.0E DD30092021;4000  WATER STEAM CYCLE / TREATMENT / COOLING SYSTEMS;4606  AUXILIARY PUMPS  LCM/GHC/GM/PGB/PCB/LCL/MBU/LCN/LDK"
1.7.5.4,56723,"4606.45  NOX TRANSFER PUMPS (OPTION)  MBU",5121,"HK1003-Rev.0E-3",WBS,"56713",,,,,NotStart,,,,,,,,,,,,,,,,,,,"HK1003 -Blackpoint D2 - Rev.0E DD30092021;4000  WATER STEAM CYCLE / TREATMENT / COOLING SYSTEMS;4606  AUXILIARY PUMPS  LCM/GHC/GM/PGB/PCB/LCL/MBU/LCN/LDK"
1.7.5.5,56722,"4606.40  CONDENSATE RECIRCULATING PUMP  LCA51",5121,"HK1003-Rev.0E-3",WBS,"56713",,,,,NotStart,,,,,,,,,,,,,,,,,,,"HK1003 -Blackpoint D2 - Rev.0E DD30092021;4000  WATER STEAM CYCLE / TREATMENT / COOLING SYSTEMS;4606  AUXILIARY PUMPS  LCM/GHC/GM/PGB/PCB/LCL/MBU/LCN/LDK"
1.7.5.6,56721,"4606.35  STEAM GENERATOR DRAIN PUMP  LCL",5121,"HK1003-Rev.0E-3",WBS,"56713",,,,,NotStart,,,,,,,,,,,,,,,,,,,"HK1003 -Blackpoint D2 - Rev.0E DD30092021;4000  WATER STEAM CYCLE / TREATMENT / COOLING SYSTEMS;4606  AUXILIARY PUMPS  LCM/GHC/GM/PGB/PCB/LCL/MBU/LCN/LDK"
1.7.5.7,56720,"4606.30  SERVICE COOLING WATER PUMP  PCB",5121,"HK1003-Rev.0E-3",WBS,"56713",,,,,NotStart,,,,,,,,,,,,,,,,,,,"HK1003 -Blackpoint D2 - Rev.0E DD30092021;4000  WATER STEAM CYCLE / TREATMENT / COOLING SYSTEMS;4606  AUXILIARY PUMPS  LCM/GHC/GM/PGB/PCB/LCL/MBU/LCN/LDK"
1.7.5.8,56719,"4606.25  CLOSED COOLING WATER PUMPS  PGB",5121,"HK1003-Rev.0E-3",WBS,"56713",,,,,NotStart,,,,,,,,,,,,,,,,,,,"HK1003 -Blackpoint D2 - Rev.0E DD30092021;4000  WATER STEAM CYCLE / TREATMENT / COOLING SYSTEMS;4606  AUXILIARY PUMPS  LCM/GHC/GM/PGB/PCB/LCL/MBU/LCN/LDK"
1.7.5.9,56718,"4606.20  OIL SEPARATOR PUMPS  GM",5121,"HK1003-Rev.0E-3",WBS,"56713",,,,,NotStart,,,,,,,,,,,,,,,,,,,"HK1003 -Blackpoint D2 - Rev.0E DD30092021;4000  WATER STEAM CYCLE / TREATMENT / COOLING SYSTEMS;4606  AUXILIARY PUMPS  LCM/GHC/GM/PGB/PCB/LCL/MBU/LCN/LDK"
1.7.5.10,56717,"4606.17  SEWAGE WATER PUMP FOR UGU  GM",5121,"HK1003-Rev.0E-3",WBS,"56713",,,,,NotStart,,,,,,,,,,,,,,,,,,,"HK1003 -Blackpoint D2 - Rev.0E DD30092021;4000  WATER STEAM CYCLE / TREATMENT / COOLING SYSTEMS;4606  AUXILIARY PUMPS  LCM/GHC/GM/PGB/PCB/LCL/MBU/LCN/LDK"
1.7.5.11,56716,"4606.15  SUMP PUMPS  GM",5121,"HK1003-Rev.0E-3",WBS,"56713",,,,,NotStart,,,,,,,,,,,,,,,,,,,"HK1003 -Blackpoint D2 - Rev.0E DD30092021;4000  WATER STEAM CYCLE / TREATMENT / COOLING SYSTEMS;4606  AUXILIARY PUMPS  LCM/GHC/GM/PGB/PCB/LCL/MBU/LCN/LDK"
1.7.5.12,56715,"4606.10  DEMINERALIZED WATER PUMPS  GHC",5121,"HK1003-Rev.0E-3",WBS,"56713",,,,,NotStart,,,,,,,,,,,,,,,,,,,"HK1003 -Blackpoint D2 - Rev.0E DD30092021;4000  WATER STEAM CYCLE / TREATMENT / COOLING SYSTEMS;4606  AUXILIARY PUMPS  LCM/GHC/GM/PGB/PCB/LCL/MBU/LCN/LDK"
1.7.5.13,56714,"4606.05  CLEAN DRAINS PUMP  LCM",5121,"HK1003-Rev.0E-3",WBS,"56713",,,,,NotStart,,,,,,,,,,,,,,,,,,,"HK1003 -Blackpoint D2 - Rev.0E DD30092021;4000  WATER STEAM CYCLE / TREATMENT / COOLING SYSTEMS;4606  AUXILIARY PUMPS  LCM/GHC/GM/PGB/PCB/LCL/MBU/LCN/LDK"
1.7.6,56709,"4601  MAIN PUMPS  LAC/LCB/PAC",5121,"HK1003-Rev.0E-3",WBS,"56674",,,,100,Complete,,,,,,,,,0,,0,,0,,0,,,,"HK1003 -Blackpoint D2 - Rev.0E DD30092021;4000  WATER STEAM CYCLE / TREATMENT / COOLING SYSTEMS"
1.7.6.1,56712,"4601.15  CIRCULATING COOLING WATER PUMPS  PAC",5121,"HK1003-Rev.0E-3",WBS,"56709",,,,,NotStart,,,,,,,,,,,,,,,,,,,"HK1003 -Blackpoint D2 - Rev.0E DD30092021;4000  WATER STEAM CYCLE / TREATMENT / COOLING SYSTEMS;4601  MAIN PUMPS  LAC/LCB/PAC"
1.7.6.2,56711,"4601.10  CONDENSATE EXTRACTION PUMPS  LCB",5121,"HK1003-Rev.0E-3",WBS,"56709",,,,,NotStart,,,,,,,,,,,,,,,,,,,"HK1003 -Blackpoint D2 - Rev.0E DD30092021;4000  WATER STEAM CYCLE / TREATMENT / COOLING SYSTEMS;4601  MAIN PUMPS  LAC/LCB/PAC"
1.7.6.3,56710,"4601.05  FEEDWATER PUMPS  LAC",5121,"HK1003-Rev.0E-3",WBS,"56709",,,,,NotStart,,,,,,,,,,,,,,,,,,,"HK1003 -Blackpoint D2 - Rev.0E DD30092021;4000  WATER STEAM CYCLE / TREATMENT / COOLING SYSTEMS;4601  MAIN PUMPS  LAC/LCB/PAC"
1.7.7,56706,"4531  TANKS, SITE FABRICATION  GAD/GHC",5121,"HK1003-Rev.0E-3",WBS,"56674",,,,100,Complete,,,,,,,,,0,,0,,0,,0,,,,"HK1003 -Blackpoint D2 - Rev.0E DD30092021;4000  WATER STEAM CYCLE / TREATMENT / COOLING SYSTEMS"
1.7.7.1,56708,"4531.10  DEMINERALIZED WATER TANK  GHC",5121,"HK1003-Rev.0E-3",WBS,"56706",,,,,NotStart,,,,,,,,,,,,,,,,,,,"HK1003 -Blackpoint D2 - Rev.0E DD30092021;4000  WATER STEAM CYCLE / TREATMENT / COOLING SYSTEMS;4531  TANKS, SITE FABRICATION  GAD/GHC"
1.7.7.2,56707,"4531.05  RAW WATER TANK  GAD",5121,"HK1003-Rev.0E-3",WBS,"56706",,,,,NotStart,,,,,,,,,,,,,,,,,,,"HK1003 -Blackpoint D2 - Rev.0E DD30092021;4000  WATER STEAM CYCLE / TREATMENT / COOLING SYSTEMS;4531  TANKS, SITE FABRICATION  GAD/GHC"
1.7.8,56696,"4521  HEAT EXCHANGERS + TANKS  LBG/PGB/PDB/LCM/LBH/MBQ/MBL/MBA",5121,"HK1003-Rev.0E-3",WBS,"56674",,,,100,Complete,,,,,,,,,0,,0,,0,,0,,,,"HK1003 -Blackpoint D2 - Rev.0E DD30092021;4000  WATER STEAM CYCLE / TREATMENT / COOLING SYSTEMS"
1.7.8.1,56705,"4521.50  FUEL OIL FALSE START TANK  MBA",5121,"HK1003-Rev.0E-3",WBS,"56696",,,,,NotStart,,,,,,,,,,,,,,,,,,,"HK1003 -Blackpoint D2 - Rev.0E DD30092021;4000  WATER STEAM CYCLE / TREATMENT / COOLING SYSTEMS;4521  HEAT EXCHANGERS + TANKS  LBG/PGB/PDB/LCM/LBH/MBQ/MBL/MBA"
1.7.8.2,56704,"4521.45  WASH WATER TANK  MBA",5121,"HK1003-Rev.0E-3",WBS,"56696",,,,,NotStart,,,,,,,,,,,,,,,,,,,"HK1003 -Blackpoint D2 - Rev.0E DD30092021;4000  WATER STEAM CYCLE / TREATMENT / COOLING SYSTEMS;4521  HEAT EXCHANGERS + TANKS  LBG/PGB/PDB/LCM/LBH/MBQ/MBL/MBA"
1.7.8.3,56703,"4521.40  CONDENSING HEATER  MBL85",5121,"HK1003-Rev.0E-3",WBS,"56696",,,,,NotStart,,,,,,,,,,,,,,,,,,,"HK1003 -Blackpoint D2 - Rev.0E DD30092021;4000  WATER STEAM CYCLE / TREATMENT / COOLING SYSTEMS;4521  HEAT EXCHANGERS + TANKS  LBG/PGB/PDB/LCM/LBH/MBQ/MBL/MBA"
1.7.8.4,56702,"4521.35  IGNITION GAS SYSTEM MBQ10",5121,"HK1003-Rev.0E-3",WBS,"56696",,,,,NotStart,,,,,,,,,,,,,,,,,,,"HK1003 -Blackpoint D2 - Rev.0E DD30092021;4000  WATER STEAM CYCLE / TREATMENT / COOLING SYSTEMS;4521  HEAT EXCHANGERS + TANKS  LBG/PGB/PDB/LCM/LBH/MBQ/MBL/MBA"
1.7.8.5,56701,"4521.30  CLEAN DRAINS FLASH TANK  LBH",5121,"HK1003-Rev.0E-3",WBS,"56696",,,,,NotStart,,,,,,,,,,,,,,,,,,,"HK1003 -Blackpoint D2 - Rev.0E DD30092021;4000  WATER STEAM CYCLE / TREATMENT / COOLING SYSTEMS;4521  HEAT EXCHANGERS + TANKS  LBG/PGB/PDB/LCM/LBH/MBQ/MBL/MBA"
1.7.8.6,56700,"4521.25  CLEAN DRAINS FLASH + CONDENSATE TANK  LCM",5121,"HK1003-Rev.0E-3",WBS,"56696",,,,,NotStart,,,,,,,,,,,,,,,,,,,"HK1003 -Blackpoint D2 - Rev.0E DD30092021;4000  WATER STEAM CYCLE / TREATMENT / COOLING SYSTEMS;4521  HEAT EXCHANGERS + TANKS  LBG/PGB/PDB/LCM/LBH/MBQ/MBL/MBA"
1.7.8.7,56699,"4521.15  CLOSED COOLING WATER EXPANSION TANK  PGB",5121,"HK1003-Rev.0E-3",WBS,"56696",,,,,NotStart,,,,,,,,,,,,,,,,,,,"HK1003 -Blackpoint D2 - Rev.0E DD30092021;4000  WATER STEAM CYCLE / TREATMENT / COOLING SYSTEMS;4521  HEAT EXCHANGERS + TANKS  LBG/PGB/PDB/LCM/LBH/MBQ/MBL/MBA"
1.7.8.8,56698,"4521.10  CLOSED COOLING WATER HEAT EXCHANGER  PGB",5121,"HK1003-Rev.0E-3",WBS,"56696",,,,,NotStart,,,,,,,,,,,,,,,,,,,"HK1003 -Blackpoint D2 - Rev.0E DD30092021;4000  WATER STEAM CYCLE / TREATMENT / COOLING SYSTEMS;4521  HEAT EXCHANGERS + TANKS  LBG/PGB/PDB/LCM/LBH/MBQ/MBL/MBA"
1.7.8.9,56697,"4521.05  ELECTRICAL SUPERHEATER  LBG",5121,"HK1003-Rev.0E-3",WBS,"56696",,,,,NotStart,,,,,,,,,,,,,,,,,,,"HK1003 -Blackpoint D2 - Rev.0E DD30092021;4000  WATER STEAM CYCLE / TREATMENT / COOLING SYSTEMS;4521  HEAT EXCHANGERS + TANKS  LBG/PGB/PDB/LCM/LBH/MBQ/MBL/MBA"
1.7.9,56695,"4451  DOSING CONTAINER  QC",5121,"HK1003-Rev.0E-3",WBS,"56674",,,,,NotStart,,,,,,,,,,,,,,,,,,,"HK1003 -Blackpoint D2 - Rev.0E DD30092021;4000  WATER STEAM CYCLE / TREATMENT / COOLING SYSTEMS"
1.7.10,56694,"4441  SAMPLING CONTAINER  QU",5121,"HK1003-Rev.0E-3",WBS,"56674",,,,,NotStart,,,,,,,,,,,,,,,,,,,"HK1003 -Blackpoint D2 - Rev.0E DD30092021;4000  WATER STEAM CYCLE / TREATMENT / COOLING SYSTEMS"
1.7.11,56692,"4431  CHEMICAL COOLING WATER TREATMENT SYSTEMS  PBE/PBQ/PUN",5121,"HK1003-Rev.0E-3",WBS,"56674",,,,100,Complete,,,,,,,,,0,,0,,0,,0,,,,"HK1003 -Blackpoint D2 - Rev.0E DD30092021;4000  WATER STEAM CYCLE / TREATMENT / COOLING SYSTEMS"
1.7.11.1,56693,"4431.05  COOLING WATER MAKEUP SYSTEM  PBE/PBQ/PUN",5121,"HK1003-Rev.0E-3",WBS,"56692",,,,,NotStart,,,,,,,,,,,,,,,,,,,"HK1003 -Blackpoint D2 - Rev.0E DD30092021;4000  WATER STEAM CYCLE / TREATMENT / COOLING SYSTEMS;4431  CHEMICAL COOLING WATER TREATMENT SYSTEMS  PBE/PBQ/PUN"
1.7.12,56691,"4421  DEMINERALIZATION PLANT SYSTEM  GC",5121,"HK1003-Rev.0E-3",WBS,"56674",,,,,NotStart,,,,,,,,,,,,,,,,,,,"HK1003 -Blackpoint D2 - Rev.0E DD30092021;4000  WATER STEAM CYCLE / TREATMENT / COOLING SYSTEMS"
1.7.13,56690,"4411  CONDENSATE POLISHING PLANT  LD",5121,"HK1003-Rev.0E-3",WBS,"56674",,,,,NotStart,,,,,,,,,,,,,,,,,,,"HK1003 -Blackpoint D2 - Rev.0E DD30092021;4000  WATER STEAM CYCLE / TREATMENT / COOLING SYSTEMS"
1.7.14,56689,"4361  COOLING TOWER EQUIPMENT FOR CIRCULATING WATER  PAD",5121,"HK1003-Rev.0E-3",WBS,"56674",,,,,NotStart,,,,,,,,,,,,,,,,,,,"HK1003 -Blackpoint D2 - Rev.0E DD30092021;4000  WATER STEAM CYCLE / TREATMENT / COOLING SYSTEMS"
1.7.15,56686,"4341  CLEANING SYSTEMS FOR HEAT EXCHANGER, CONDENSER  PA-",5121,"HK1003-Rev.0E-3",WBS,"56674",,,,100,Complete,,,,,,,,,0,,0,,0,,0,,,,"HK1003 -Blackpoint D2 - Rev.0E DD30092021;4000  WATER STEAM CYCLE / TREATMENT / COOLING SYSTEMS"
1.7.15.1,56688,"4341.10  CONDENSER TUBE CLEANING SYSTEM  PAH",5121,"HK1003-Rev.0E-3",WBS,"56686",,,,,NotStart,,,,,,,,,,,,,,,,,,,"HK1003 -Blackpoint D2 - Rev.0E DD30092021;4000  WATER STEAM CYCLE / TREATMENT / COOLING SYSTEMS;4341  CLEANING SYSTEMS FOR HEAT EXCHANGER, CONDENSER  PA-"
1.7.15.2,56687,"4341.05  BAR SCREEN FOR COOLING WATER SYSTEM  PAA",5121,"HK1003-Rev.0E-3",WBS,"56686",,,,,NotStart,,,,,,,,,,,,,,,,,,,"HK1003 -Blackpoint D2 - Rev.0E DD30092021;4000  WATER STEAM CYCLE / TREATMENT / COOLING SYSTEMS;4341  CLEANING SYSTEMS FOR HEAT EXCHANGER, CONDENSER  PA-"
1.7.16,56685,"4331  DEBRIS FILTER FOR PCB-SYSTEM  PDB",5121,"HK1003-Rev.0E-3",WBS,"56674",,,,,NotStart,,,,,,,,,,,,,,,,,,,"HK1003 -Blackpoint D2 - Rev.0E DD30092021;4000  WATER STEAM CYCLE / TREATMENT / COOLING SYSTEMS"
1.7.17,56675,"4110  PROCESS ENGINEERING",5121,"HK1003-Rev.0E-3",WBS,"56674",,,,100,Complete,,,,,,,,,0,,0,,0,,0,,,,"HK1003 -Blackpoint D2 - Rev.0E DD30092021;4000  WATER STEAM CYCLE / TREATMENT / COOLING SYSTEMS"
1.7.17.1,56684,"4110.50  PROCESS ENGINEERING TRACE HEATING SYSTEMS",5121,"HK1003-Rev.0E-3",WBS,"56675",,,,,NotStart,,,,,,,,,,,,,,,,,,,"HK1003 -Blackpoint D2 - Rev.0E DD30092021;4000  WATER STEAM CYCLE / TREATMENT / COOLING SYSTEMS;4110  PROCESS ENGINEERING"
1.7.17.2,56683,"4110.45  PROCESS ENGINEERING THERMODYNAMIC DIAGNOSIS",5121,"HK1003-Rev.0E-3",WBS,"56675",,,,,NotStart,,,,,,,,,,,,,,,,,,,"HK1003 -Blackpoint D2 - Rev.0E DD30092021;4000  WATER STEAM CYCLE / TREATMENT / COOLING SYSTEMS;4110  PROCESS ENGINEERING"
1.7.17.3,56682,"4110.40  PROCESS ENGINEERING AUXILIARY POWER SYSTEMS",5121,"HK1003-Rev.0E-3",WBS,"56675",,,,,NotStart,,,,,,,,,,,,,,,,,,,"HK1003 -Blackpoint D2 - Rev.0E DD30092021;4000  WATER STEAM CYCLE / TREATMENT / COOLING SYSTEMS;4110  PROCESS ENGINEERING"
1.7.17.4,56681,"4110.35  PROCESS ENGINEERING BLACK BOX SYSTEMS",5121,"HK1003-Rev.0E-3",WBS,"56675",,,,,NotStart,,,,,,,,,,,,,,,,,,,"HK1003 -Blackpoint D2 - Rev.0E DD30092021;4000  WATER STEAM CYCLE / TREATMENT / COOLING SYSTEMS;4110  PROCESS ENGINEERING"
1.7.17.5,56680,"4110.25  PROCESS ENGINEERING GHC;GA;GK;GM;SCB;MBU",5121,"HK1003-Rev.0E-3",WBS,"56675",,,,,NotStart,,,,,,,,,,,,,,,,,,,"HK1003 -Blackpoint D2 - Rev.0E DD30092021;4000  WATER STEAM CYCLE / TREATMENT / COOLING SYSTEMS;4110  PROCESS ENGINEERING"
1.7.17.6,56679,"4110.20  PROCESS ENGINEERING PAB,PAD10;PCB;PGB",5121,"HK1003-Rev.0E-3",WBS,"56675",,,,,NotStart,,,,,,,,,,,,,,,,,,,"HK1003 -Blackpoint D2 - Rev.0E DD30092021;4000  WATER STEAM CYCLE / TREATMENT / COOLING SYSTEMS;4110  PROCESS ENGINEERING"
1.7.17.7,56678,"4110.15  PROCESS ENGINEERING LAA,LAB;LBA10/80,LBB,LBC,LBG;LC",5121,"HK1003-Rev.0E-3",WBS,"56675",,,,,NotStart,,,,,,,,,,,,,,,,,,,"HK1003 -Blackpoint D2 - Rev.0E DD30092021;4000  WATER STEAM CYCLE / TREATMENT / COOLING SYSTEMS;4110  PROCESS ENGINEERING"
1.7.17.8,56677,"4110.10  PROCESS ENGINEERING STEAM GENERATOR SYSTEMS",5121,"HK1003-Rev.0E-3",WBS,"56675",,,,,NotStart,,,,,,,,,,,,,,,,,,,"HK1003 -Blackpoint D2 - Rev.0E DD30092021;4000  WATER STEAM CYCLE / TREATMENT / COOLING SYSTEMS;4110  PROCESS ENGINEERING"
1.7.17.9,56676,"4110.05  GENERAL ACTIVITIES (KICK-OFF PHASE)  PROCESS + I&C",5121,"HK1003-Rev.0E-3",WBS,"56675",,,,,NotStart,,,,,,,,,,,,,,,,,,,"HK1003 -Blackpoint D2 - Rev.0E DD30092021;4000  WATER STEAM CYCLE / TREATMENT / COOLING SYSTEMS;4110  PROCESS ENGINEERING"
1.8,56574,"3000  TURBOSET",5121,"HK1003-Rev.0E-3",WBS,"55902",,,,100,Complete,,,,,,,,,0,,0,,0,,0,,,,"HK1003 -Blackpoint D2 - Rev.0E DD30092021"
1.8.1,56672,"3600  TURBINE PACKAGE - GENERATOR FOR GAS TURBINE  MK",5121,"HK1003-Rev.0E-3",WBS,"56574",,,,100,Complete,,,,,,,,,0,,0,,0,,0,,,,"HK1003 -Blackpoint D2 - Rev.0E DD30092021;3000  TURBOSET"
1.8.1.1,56673,"3600.05  GT GENERATOR ENGINEERING TRANSMITTAL SCHEDULE",5121,"HK1003-Rev.0E-3",WBS,"56672",,,,,NotStart,,,,,,,,,,,,,,,,,,,"HK1003 -Blackpoint D2 - Rev.0E DD30092021;3000  TURBOSET;3600  TURBINE PACKAGE - GENERATOR FOR GAS TURBINE  MK"
1.8.2,56650,"3521 GAS TURBINE AUXILIARY SYSTEMS MB",5121,"HK1003-Rev.0E-3",WBS,"56574",,,,100,Complete,,,,,,,,,0,,0,,0,,0,,,,"HK1003 -Blackpoint D2 - Rev.0E DD30092021;3000  TURBOSET"
1.8.2.1,56669,"3521.75 FIRE FIGHTING/GAS DETECTION FOR NOISE ENCLOSURE  SGJ/CYQ/CYE",5121,"HK1003-Rev.0E-3",WBS,"56650",,,,100,Complete,,,,,,,,,0,,0,,0,,0,,,,"HK1003 -Blackpoint D2 - Rev.0E DD30092021;3000  TURBOSET;3521 GAS TURBINE AUXILIARY SYSTEMS MB"
1.8.2.1.1,56671,"3521.75.10 FIRE FIGHTING/GAS DETECTION FOR NOISE ENCLOSURE/PCC SGJ/CYQ/CYE",5121,"HK1003-Rev.0E-3",WBS,"56669",,,,,NotStart,,,,,,,,,,,,,,,,,,,"HK1003 -Blackpoint D2 - Rev.0E DD30092021;3000  TURBOSET;3521 GAS TURBINE AUXILIARY SYSTEMS MB;3521.75 FIRE FIGHTING/GAS DETECTION FOR NOISE ENCLOSURE  SGJ/CYQ/CYE"
1.8.2.1.2,56670,"3521.75.05 FIRE FIGHTING/GAS DETECTION SOFTWARE SUBMITTAL",5121,"HK1003-Rev.0E-3",WBS,"56669",,,,,NotStart,,,,,,,,,,,,,,,,,,,"HK1003 -Blackpoint D2 - Rev.0E DD30092021;3000  TURBOSET;3521 GAS TURBINE AUXILIARY SYSTEMS MB;3521.75 FIRE FIGHTING/GAS DETECTION FOR NOISE ENCLOSURE  SGJ/CYQ/CYE"
1.8.2.2,56666,"3521.70 GAS TURBINE ENCLOSURE INCL. VENTILATION  MPB/SAM",5121,"HK1003-Rev.0E-3",WBS,"56650",,,,100,Complete,,,,,,,,,0,,0,,0,,0,,,,"HK1003 -Blackpoint D2 - Rev.0E DD30092021;3000  TURBOSET;3521 GAS TURBINE AUXILIARY SYSTEMS MB"
1.8.2.2.1,56668,"3521.70.10 GAS TURBINE ENCLOSURE INCL. AUX.SYS. MPB",5121,"HK1003-Rev.0E-3",WBS,"56666",,,,,NotStart,,,,,,,,,,,,,,,,,,,"HK1003 -Blackpoint D2 - Rev.0E DD30092021;3000  TURBOSET;3521 GAS TURBINE AUXILIARY SYSTEMS MB;3521.70 GAS TURBINE ENCLOSURE INCL. VENTILATION  MPB/SAM"
1.8.2.2.2,56667,"3521.70.05 GAS TURBINE ENCLOSURE SOFTWARE SUBMITTAL",5121,"HK1003-Rev.0E-3",WBS,"56666",,,,,NotStart,,,,,,,,,,,,,,,,,,,"HK1003 -Blackpoint D2 - Rev.0E DD30092021;3000  TURBOSET;3521 GAS TURBINE AUXILIARY SYSTEMS MB;3521.70 GAS TURBINE ENCLOSURE INCL. VENTILATION  MPB/SAM"
1.8.2.3,56664,"3521.65 EXHAUST GAS SYSTEM  MBR",5121,"HK1003-Rev.0E-3",WBS,"56650",,,,100,Complete,,,,,,,,,0,,0,,0,,0,,,,"HK1003 -Blackpoint D2 - Rev.0E DD30092021;3000  TURBOSET;3521 GAS TURBINE AUXILIARY SYSTEMS MB"
1.8.2.3.1,56665,"3521.65.10 DIFFUSER MBR",5121,"HK1003-Rev.0E-3",WBS,"56664",,,,,NotStart,,,,,,,,,,,,,,,,,,,"HK1003 -Blackpoint D2 - Rev.0E DD30092021;3000  TURBOSET;3521 GAS TURBINE AUXILIARY SYSTEMS MB;3521.65 EXHAUST GAS SYSTEM  MBR"
1.8.2.4,56661,"3521.60 AIR INTAKE SYSTEM  MBL",5121,"HK1003-Rev.0E-3",WBS,"56650",,,,100,Complete,,,,,,,,,0,,0,,0,,0,,,,"HK1003 -Blackpoint D2 - Rev.0E DD30092021;3000  TURBOSET;3521 GAS TURBINE AUXILIARY SYSTEMS MB"
1.8.2.4.1,56663,"3521.60.10 AIR INTAKE SYSTEM MBL",5121,"HK1003-Rev.0E-3",WBS,"56661",,,,,NotStart,,,,,,,,,,,,,,,,,,,"HK1003 -Blackpoint D2 - Rev.0E DD30092021;3000  TURBOSET;3521 GAS TURBINE AUXILIARY SYSTEMS MB;3521.60 AIR INTAKE SYSTEM  MBL"
1.8.2.4.2,56662,"3521.60.05 AIR INTAKE / EXHAUST SOFTWARE SUBMITTAL",5121,"HK1003-Rev.0E-3",WBS,"56661",,,,,NotStart,,,,,,,,,,,,,,,,,,,"HK1003 -Blackpoint D2 - Rev.0E DD30092021;3000  TURBOSET;3521 GAS TURBINE AUXILIARY SYSTEMS MB;3521.60 AIR INTAKE SYSTEM  MBL"
1.8.2.5,56660,"3521.55 INTERCONNECTING PIPING ECONOPAC  MB-",5121,"HK1003-Rev.0E-3",WBS,"56650",,,,,NotStart,,,,,,,,,,,,,,,,,,,"HK1003 -Blackpoint D2 - Rev.0E DD30092021;3000  TURBOSET;3521 GAS TURBINE AUXILIARY SYSTEMS MB"
1.8.2.6,56659,"3521.35 GT AUXILIARIES TURNING DEVICE  MBK",5121,"HK1003-Rev.0E-3",WBS,"56650",,,,,NotStart,,,,,,,,,,,,,,,,,,,"HK1003 -Blackpoint D2 - Rev.0E DD30092021;3000  TURBOSET;3521 GAS TURBINE AUXILIARY SYSTEMS MB"
1.8.2.7,56658,"3521.30 GT AUXILIARIES COMBUSTION CHAMBER RACK  MBM",5121,"HK1003-Rev.0E-3",WBS,"56650",,,,,NotStart,,,,,,,,,,,,,,,,,,,"HK1003 -Blackpoint D2 - Rev.0E DD30092021;3000  TURBOSET;3521 GAS TURBINE AUXILIARY SYSTEMS MB"
1.8.2.8,56657,"3521.25 GT AUXILIARIES HCO UNIT  MBA",5121,"HK1003-Rev.0E-3",WBS,"56650",,,,,NotStart,,,,,,,,,,,,,,,,,,,"HK1003 -Blackpoint D2 - Rev.0E DD30092021;3000  TURBOSET;3521 GAS TURBINE AUXILIARY SYSTEMS MB"
1.8.2.9,56656,"3521.22 GT AUXILIARIES PURGE WATER SKID MBN",5121,"HK1003-Rev.0E-3",WBS,"56650",,,,,NotStart,,,,,,,,,,,,,,,,,,,"HK1003 -Blackpoint D2 - Rev.0E DD30092021;3000  TURBOSET;3521 GAS TURBINE AUXILIARY SYSTEMS MB"
1.8.2.10,56655,"3521.20 GT AUXILIARIES FUEL OIL PACKAGE MBN",5121,"HK1003-Rev.0E-3",WBS,"56650",,,,,NotStart,,,,,,,,,,,,,,,,,,,"HK1003 -Blackpoint D2 - Rev.0E DD30092021;3000  TURBOSET;3521 GAS TURBINE AUXILIARY SYSTEMS MB"
1.8.2.11,56654,"3521.15 GT AUXILIARIES FUEL GAS PACKAGE  MBP",5121,"HK1003-Rev.0E-3",WBS,"56650",,,,,NotStart,,,,,,,,,,,,,,,,,,,"HK1003 -Blackpoint D2 - Rev.0E DD30092021;3000  TURBOSET;3521 GAS TURBINE AUXILIARY SYSTEMS MB"
1.8.2.12,56653,"3521.10 GT AUXILIARIES NOx WATER PACKAGE  MBU",5121,"HK1003-Rev.0E-3",WBS,"56650",,,,,NotStart,,,,,,,,,,,,,,,,,,,"HK1003 -Blackpoint D2 - Rev.0E DD30092021;3000  TURBOSET;3521 GAS TURBINE AUXILIARY SYSTEMS MB"
1.8.2.13,56652,"3521.07 GT AUXILIARIES HYDRAULIC PACKAGE MBX",5121,"HK1003-Rev.0E-3",WBS,"56650",,,,,NotStart,,,,,,,,,,,,,,,,,,,"HK1003 -Blackpoint D2 - Rev.0E DD30092021;3000  TURBOSET;3521 GAS TURBINE AUXILIARY SYSTEMS MB"
1.8.2.14,56651,"3521.05 GT AUXILIARIES PNEUMATIC PACKAGE MBX",5121,"HK1003-Rev.0E-3",WBS,"56650",,,,,NotStart,,,,,,,,,,,,,,,,,,,"HK1003 -Blackpoint D2 - Rev.0E DD30092021;3000  TURBOSET;3521 GAS TURBINE AUXILIARY SYSTEMS MB"
1.8.3,56643,"3500  TURBINE PACKAGE - GAS TURBINE",5121,"HK1003-Rev.0E-3",WBS,"56574",,,,100,Complete,,,,,,,,,0,,0,,0,,0,,,,"HK1003 -Blackpoint D2 - Rev.0E DD30092021;3000  TURBOSET"
1.8.3.1,56644,"3500.05  GAS TURBINE, GENERAL  MB-",5121,"HK1003-Rev.0E-3",WBS,"56643",,,,100,Complete,,,,,,,,,0,,0,,0,,0,,,,"HK1003 -Blackpoint D2 - Rev.0E DD30092021;3000  TURBOSET;3500  TURBINE PACKAGE - GAS TURBINE"
1.8.3.1.1,56649,"3500.05.20  GAS TURBINE INSULATION MB-",5121,"HK1003-Rev.0E-3",WBS,"56644",,,,,NotStart,,,,,,,,,,,,,,,,,,,"HK1003 -Blackpoint D2 - Rev.0E DD30092021;3000  TURBOSET;3500  TURBINE PACKAGE - GAS TURBINE;3500.05  GAS TURBINE, GENERAL  MB-"
1.8.3.1.2,56648,"3500.05.15  GAS TURBINE PARTS  MB-",5121,"HK1003-Rev.0E-3",WBS,"56644",,,,,NotStart,,,,,,,,,,,,,,,,,,,"HK1003 -Blackpoint D2 - Rev.0E DD30092021;3000  TURBOSET;3500  TURBINE PACKAGE - GAS TURBINE;3500.05  GAS TURBINE, GENERAL  MB-"
1.8.3.1.3,56647,"3500.05.10  GAS TURBINE  MB-",5121,"HK1003-Rev.0E-3",WBS,"56644",,,,,NotStart,,,,,,,,,,,,,,,,,,,"HK1003 -Blackpoint D2 - Rev.0E DD30092021;3000  TURBOSET;3500  TURBINE PACKAGE - GAS TURBINE;3500.05  GAS TURBINE, GENERAL  MB-"
1.8.3.1.4,56646,"3500.05.07  GT AUXILIARIES ENGINEERING TRANSMITTAL SCHEDULE (AAP)  MB-",5121,"HK1003-Rev.0E-3",WBS,"56644",,,,,NotStart,,,,,,,,,,,,,,,,,,,"HK1003 -Blackpoint D2 - Rev.0E DD30092021;3000  TURBOSET;3500  TURBINE PACKAGE - GAS TURBINE;3500.05  GAS TURBINE, GENERAL  MB-"
1.8.3.1.5,56645,"3500.05.05  GAS TURBINE ENGINEERING TRANSMITTAL SCHEDULE  MB-",5121,"HK1003-Rev.0E-3",WBS,"56644",,,,,NotStart,,,,,,,,,,,,,,,,,,,"HK1003 -Blackpoint D2 - Rev.0E DD30092021;3000  TURBOSET;3500  TURBINE PACKAGE - GAS TURBINE;3500.05  GAS TURBINE, GENERAL  MB-"
1.8.4,56641,"3480  TURBINE PACKAGE - GENERATOR FOR STEAM TURBINE  MK",5121,"HK1003-Rev.0E-3",WBS,"56574",,,,100,Complete,,,,,,,,,0,,0,,0,,0,,,,"HK1003 -Blackpoint D2 - Rev.0E DD30092021;3000  TURBOSET"
1.8.4.1,56642,"3480.15  ST GENERATOR  MKA",5121,"HK1003-Rev.0E-3",WBS,"56641",,,,,NotStart,,,,,,,,,,,,,,,,,,,"HK1003 -Blackpoint D2 - Rev.0E DD30092021;3000  TURBOSET;3480  TURBINE PACKAGE - GENERATOR FOR STEAM TURBINE  MK"
1.8.5,56624,"3445  TURBINE PACKAGE - STEAM TURBINE MAIN COMPONENTS  MA-",5121,"HK1003-Rev.0E-3",WBS,"56574",,,,100,Complete,,,,,,,,,0,,0,,0,,0,,,,"HK1003 -Blackpoint D2 - Rev.0E DD30092021;3000  TURBOSET"
1.8.5.1,56640,"3445.30  CONDENSER  MAG",5121,"HK1003-Rev.0E-3",WBS,"56624",,,,,NotStart,,,,,,,,,,,,,,,,,,,"HK1003 -Blackpoint D2 - Rev.0E DD30092021;3000  TURBOSET;3445  TURBINE PACKAGE - STEAM TURBINE MAIN COMPONENTS  MA-"
1.8.5.2,56633,"3445.25   AUTOMATION STEAM TURBINE  MA-",5121,"HK1003-Rev.0E-3",WBS,"56624",,,,100,Complete,,,,,,,,,0,,0,,0,,0,,,,"HK1003 -Blackpoint D2 - Rev.0E DD30092021;3000  TURBOSET;3445  TURBINE PACKAGE - STEAM TURBINE MAIN COMPONENTS  MA-"
1.8.5.2.1,56639,"3445.25.30  ST FIELD INSTRUMENTATION",5121,"HK1003-Rev.0E-3",WBS,"56633",,,,,NotStart,,,,,,,,,,,,,,,,,,,"HK1003 -Blackpoint D2 - Rev.0E DD30092021;3000  TURBOSET;3445  TURBINE PACKAGE - STEAM TURBINE MAIN COMPONENTS  MA-;3445.25   AUTOMATION STEAM TURBINE  MA-"
1.8.5.2.2,56638,"3445.25.25 ST AUTOMATION CABINET MANUFACTURING",5121,"HK1003-Rev.0E-3",WBS,"56633",,,,,NotStart,,,,,,,,,,,,,,,,,,,"HK1003 -Blackpoint D2 - Rev.0E DD30092021;3000  TURBOSET;3445  TURBINE PACKAGE - STEAM TURBINE MAIN COMPONENTS  MA-;3445.25   AUTOMATION STEAM TURBINE  MA-"
1.8.5.2.3,56637,"3445.25.20 ST AUTOMATION SOFTWARE ENGINEERING",5121,"HK1003-Rev.0E-3",WBS,"56633",,,,,NotStart,,,,,,,,,,,,,,,,,,,"HK1003 -Blackpoint D2 - Rev.0E DD30092021;3000  TURBOSET;3445  TURBINE PACKAGE - STEAM TURBINE MAIN COMPONENTS  MA-;3445.25   AUTOMATION STEAM TURBINE  MA-"
1.8.5.2.4,56636,"3445.25.15 ST AUTOMATION HARDWARE ENGINEERING",5121,"HK1003-Rev.0E-3",WBS,"56633",,,,,NotStart,,,,,,,,,,,,,,,,,,,"HK1003 -Blackpoint D2 - Rev.0E DD30092021;3000  TURBOSET;3445  TURBINE PACKAGE - STEAM TURBINE MAIN COMPONENTS  MA-;3445.25   AUTOMATION STEAM TURBINE  MA-"
1.8.5.2.5,56635,"3445.25.10 ST AUTOMATION ENGINEERING START ACTIVITIES",5121,"HK1003-Rev.0E-3",WBS,"56633",,,,,NotStart,,,,,,,,,,,,,,,,,,,"HK1003 -Blackpoint D2 - Rev.0E DD30092021;3000  TURBOSET;3445  TURBINE PACKAGE - STEAM TURBINE MAIN COMPONENTS  MA-;3445.25   AUTOMATION STEAM TURBINE  MA-"
1.8.5.2.6,56634,"3445.25.05 ST AUTOMATION PROJECT START",5121,"HK1003-Rev.0E-3",WBS,"56633",,,,,NotStart,,,,,,,,,,,,,,,,,,,"HK1003 -Blackpoint D2 - Rev.0E DD30092021;3000  TURBOSET;3445  TURBINE PACKAGE - STEAM TURBINE MAIN COMPONENTS  MA-;3445.25   AUTOMATION STEAM TURBINE  MA-"
1.8.5.3,56627,"3445.20  STEAM TURBINE AUXILIARY SYSTEMS  MA-",5121,"HK1003-Rev.0E-3",WBS,"56624",,,,100,Complete,,,,,,,,,0,,0,,0,,0,,,,"HK1003 -Blackpoint D2 - Rev.0E DD30092021;3000  TURBOSET;3445  TURBINE PACKAGE - STEAM TURBINE MAIN COMPONENTS  MA-"
1.8.5.3.1,56632,"3445.20.30  STEAM TURBINE NOISE PROTECTION SYSTEM  MPB20",5121,"HK1003-Rev.0E-3",WBS,"56627",,,,,NotStart,,,,,,,,,,,,,,,,,,,"HK1003 -Blackpoint D2 - Rev.0E DD30092021;3000  TURBOSET;3445  TURBINE PACKAGE - STEAM TURBINE MAIN COMPONENTS  MA-;3445.20  STEAM TURBINE AUXILIARY SYSTEMS  MA-"
1.8.5.3.2,56631,"3445.20.20  ST CONTROL OIL SYSTEM & PROTECTION EQUIPMENT  MAX",5121,"HK1003-Rev.0E-3",WBS,"56627",,,,,NotStart,,,,,,,,,,,,,,,,,,,"HK1003 -Blackpoint D2 - Rev.0E DD30092021;3000  TURBOSET;3445  TURBINE PACKAGE - STEAM TURBINE MAIN COMPONENTS  MA-;3445.20  STEAM TURBINE AUXILIARY SYSTEMS  MA-"
1.8.5.3.3,56630,"3445.20.15  ST SEAL & LEAK STEAM SYSTEM  MAW",5121,"HK1003-Rev.0E-3",WBS,"56627",,,,,NotStart,,,,,,,,,,,,,,,,,,,"HK1003 -Blackpoint D2 - Rev.0E DD30092021;3000  TURBOSET;3445  TURBINE PACKAGE - STEAM TURBINE MAIN COMPONENTS  MA-;3445.20  STEAM TURBINE AUXILIARY SYSTEMS  MA-"
1.8.5.3.4,56629,"3445.20.10  STEAM TURBINE OIL COMPONENTS  MAV",5121,"HK1003-Rev.0E-3",WBS,"56627",,,,,NotStart,,,,,,,,,,,,,,,,,,,"HK1003 -Blackpoint D2 - Rev.0E DD30092021;3000  TURBOSET;3445  TURBINE PACKAGE - STEAM TURBINE MAIN COMPONENTS  MA-;3445.20  STEAM TURBINE AUXILIARY SYSTEMS  MA-"
1.8.5.3.5,56628,"3445.20.05  STEAM TURBINE BEARINGS  MAD",5121,"HK1003-Rev.0E-3",WBS,"56627",,,,,NotStart,,,,,,,,,,,,,,,,,,,"HK1003 -Blackpoint D2 - Rev.0E DD30092021;3000  TURBOSET;3445  TURBINE PACKAGE - STEAM TURBINE MAIN COMPONENTS  MA-;3445.20  STEAM TURBINE AUXILIARY SYSTEMS  MA-"
1.8.5.4,56625,"3445.15  STEAM TURBINE  MA-",5121,"HK1003-Rev.0E-3",WBS,"56624",,,,100,Complete,,,,,,,,,0,,0,,0,,0,,,,"HK1003 -Blackpoint D2 - Rev.0E DD30092021;3000  TURBOSET;3445  TURBINE PACKAGE - STEAM TURBINE MAIN COMPONENTS  MA-"
1.8.5.4.1,56626,"3445.10.05  STEAM TURBINE (HE-TYPE)  MAA",5121,"HK1003-Rev.0E-3",WBS,"56625",,,,,NotStart,,,,,,,,,,,,,,,,,,,"HK1003 -Blackpoint D2 - Rev.0E DD30092021;3000  TURBOSET;3445  TURBINE PACKAGE - STEAM TURBINE MAIN COMPONENTS  MA-;3445.15  STEAM TURBINE  MA-"
1.8.6,56604,"3440  TURBINE PACKAGE - GAS TURBINE + AUXILIARY SYSTEMS  MB",5121,"HK1003-Rev.0E-3",WBS,"56574",,,,100,Complete,,,,,,,,,0,,0,,0,,0,,,,"HK1003 -Blackpoint D2 - Rev.0E DD30092021;3000  TURBOSET"
1.8.6.1,56618,"3440.20   AUTOMATION GAS TURBINE  MB",5121,"HK1003-Rev.0E-3",WBS,"56604",,,,100,Complete,,,,,,,,,0,,0,,0,,0,,,,"HK1003 -Blackpoint D2 - Rev.0E DD30092021;3000  TURBOSET;3440  TURBINE PACKAGE - GAS TURBINE + AUXILIARY SYSTEMS  MB"
1.8.6.1.1,56623,"3440.20.20  GT AUTOMATION CABINET MANUFACTURING",5121,"HK1003-Rev.0E-3",WBS,"56618",,,,,NotStart,,,,,,,,,,,,,,,,,,,"HK1003 -Blackpoint D2 - Rev.0E DD30092021;3000  TURBOSET;3440  TURBINE PACKAGE - GAS TURBINE + AUXILIARY SYSTEMS  MB;3440.20   AUTOMATION GAS TURBINE  MB"
1.8.6.1.2,56622,"3440.20.15  GT AUTOMATION HARDWARE ENGINEERING",5121,"HK1003-Rev.0E-3",WBS,"56618",,,,,NotStart,,,,,,,,,,,,,,,,,,,"HK1003 -Blackpoint D2 - Rev.0E DD30092021;3000  TURBOSET;3440  TURBINE PACKAGE - GAS TURBINE + AUXILIARY SYSTEMS  MB;3440.20   AUTOMATION GAS TURBINE  MB"
1.8.6.1.3,56621,"3440.20.10  GT AUTOMATION SOFTWARE ENGINEERING",5121,"HK1003-Rev.0E-3",WBS,"56618",,,,,NotStart,,,,,,,,,,,,,,,,,,,"HK1003 -Blackpoint D2 - Rev.0E DD30092021;3000  TURBOSET;3440  TURBINE PACKAGE - GAS TURBINE + AUXILIARY SYSTEMS  MB;3440.20   AUTOMATION GAS TURBINE  MB"
1.8.6.1.4,56620,"3440.20.07  GT AUTOMATION  SYSTEM CLARIFICATION",5121,"HK1003-Rev.0E-3",WBS,"56618",,,,,NotStart,,,,,,,,,,,,,,,,,,,"HK1003 -Blackpoint D2 - Rev.0E DD30092021;3000  TURBOSET;3440  TURBINE PACKAGE - GAS TURBINE + AUXILIARY SYSTEMS  MB;3440.20   AUTOMATION GAS TURBINE  MB"
1.8.6.1.5,56619,"3440.20.05  AUTOMATION GAS TURBINE PROJECT START",5121,"HK1003-Rev.0E-3",WBS,"56618",,,,,NotStart,,,,,,,,,,,,,,,,,,,"HK1003 -Blackpoint D2 - Rev.0E DD30092021;3000  TURBOSET;3440  TURBINE PACKAGE - GAS TURBINE + AUXILIARY SYSTEMS  MB;3440.20   AUTOMATION GAS TURBINE  MB"
1.8.6.2,56615,"3440.15   GAS TURBINE ELECTRICAL SYSTEMS  MB",5121,"HK1003-Rev.0E-3",WBS,"56604",,,,100,Complete,,,,,,,,,0,,0,,0,,0,,,,"HK1003 -Blackpoint D2 - Rev.0E DD30092021;3000  TURBOSET;3440  TURBINE PACKAGE - GAS TURBINE + AUXILIARY SYSTEMS  MB"
1.8.6.2.1,56617,"3440.15.20  GROUNDING CUBICLES  BAB",5121,"HK1003-Rev.0E-3",WBS,"56615",,,,,NotStart,,,,,,,,,,,,,,,,,,,"HK1003 -Blackpoint D2 - Rev.0E DD30092021;3000  TURBOSET;3440  TURBINE PACKAGE - GAS TURBINE + AUXILIARY SYSTEMS  MB;3440.15   GAS TURBINE ELECTRICAL SYSTEMS  MB"
1.8.6.2.2,56616,"3440.15.10  SFC/SEE TRANSFORMER/EQUIPMENT  MKC/MBJ",5121,"HK1003-Rev.0E-3",WBS,"56615",,,,,NotStart,,,,,,,,,,,,,,,,,,,"HK1003 -Blackpoint D2 - Rev.0E DD30092021;3000  TURBOSET;3440  TURBINE PACKAGE - GAS TURBINE + AUXILIARY SYSTEMS  MB;3440.15   GAS TURBINE ELECTRICAL SYSTEMS  MB"
1.8.6.3,56607,"3440.10  GAS TURBINE AUXILIARY SYSTEMS  MB",5121,"HK1003-Rev.0E-3",WBS,"56604",,,,100,Complete,,,,,,,,,0,,0,,0,,0,,,,"HK1003 -Blackpoint D2 - Rev.0E DD30092021;3000  TURBOSET;3440  TURBINE PACKAGE - GAS TURBINE + AUXILIARY SYSTEMS  MB"
1.8.6.3.1,56614,"3440.10.75  FIRE FIGHTING+GAS DETECTION FOR NOISE ENCLOSURE  SGJ/CYQ",5121,"HK1003-Rev.0E-3",WBS,"56607",,,,,NotStart,,,,,,,,,,,,,,,,,,,"HK1003 -Blackpoint D2 - Rev.0E DD30092021;3000  TURBOSET;3440  TURBINE PACKAGE - GAS TURBINE + AUXILIARY SYSTEMS  MB;3440.10  GAS TURBINE AUXILIARY SYSTEMS  MB"
1.8.6.3.2,56613,"3440.10.70  GAS TURBINE ENCLOSURE INCL. VENTILATION  MBP/SAM",5121,"HK1003-Rev.0E-3",WBS,"56607",,,,,NotStart,,,,,,,,,,,,,,,,,,,"HK1003 -Blackpoint D2 - Rev.0E DD30092021;3000  TURBOSET;3440  TURBINE PACKAGE - GAS TURBINE + AUXILIARY SYSTEMS  MB;3440.10  GAS TURBINE AUXILIARY SYSTEMS  MB"
1.8.6.3.3,56612,"3440.10.65  EXHAUST GAS DIFFUSER SYSTEM  MBR",5121,"HK1003-Rev.0E-3",WBS,"56607",,,,,NotStart,,,,,,,,,,,,,,,,,,,"HK1003 -Blackpoint D2 - Rev.0E DD30092021;3000  TURBOSET;3440  TURBINE PACKAGE - GAS TURBINE + AUXILIARY SYSTEMS  MB;3440.10  GAS TURBINE AUXILIARY SYSTEMS  MB"
1.8.6.3.4,56611,"3440.10.60  AIR INTAKE SYSTEM  MBL",5121,"HK1003-Rev.0E-3",WBS,"56607",,,,,NotStart,,,,,,,,,,,,,,,,,,,"HK1003 -Blackpoint D2 - Rev.0E DD30092021;3000  TURBOSET;3440  TURBINE PACKAGE - GAS TURBINE + AUXILIARY SYSTEMS  MB;3440.10  GAS TURBINE AUXILIARY SYSTEMS  MB"
1.8.6.3.5,56610,"3440.10.25  GT AUXILIARIES  HCO UNIT  MBA",5121,"HK1003-Rev.0E-3",WBS,"56607",,,,,NotStart,,,,,,,,,,,,,,,,,,,"HK1003 -Blackpoint D2 - Rev.0E DD30092021;3000  TURBOSET;3440  TURBINE PACKAGE - GAS TURBINE + AUXILIARY SYSTEMS  MB;3440.10  GAS TURBINE AUXILIARY SYSTEMS  MB"
1.8.6.3.6,56609,"3440.10.15  GT AUXILIARIES  FUEL GAS PACKAGE  MBP",5121,"HK1003-Rev.0E-3",WBS,"56607",,,,,NotStart,,,,,,,,,,,,,,,,,,,"HK1003 -Blackpoint D2 - Rev.0E DD30092021;3000  TURBOSET;3440  TURBINE PACKAGE - GAS TURBINE + AUXILIARY SYSTEMS  MB;3440.10  GAS TURBINE AUXILIARY SYSTEMS  MB"
1.8.6.3.7,56608,"3440.10.10  GT AUXILIARIES  NOx WATER PACKAGE  MBU",5121,"HK1003-Rev.0E-3",WBS,"56607",,,,,NotStart,,,,,,,,,,,,,,,,,,,"HK1003 -Blackpoint D2 - Rev.0E DD30092021;3000  TURBOSET;3440  TURBINE PACKAGE - GAS TURBINE + AUXILIARY SYSTEMS  MB;3440.10  GAS TURBINE AUXILIARY SYSTEMS  MB"
1.8.6.4,56605,"3440.05   GAS TURBINE GENERAL ACTIVITIES  MB-",5121,"HK1003-Rev.0E-3",WBS,"56604",,,,100,Complete,,,,,,,,,0,,0,,0,,0,,,,"HK1003 -Blackpoint D2 - Rev.0E DD30092021;3000  TURBOSET;3440  TURBINE PACKAGE - GAS TURBINE + AUXILIARY SYSTEMS  MB"
1.8.6.4.1,56606,"3440.05.10  GAS TURBINE  MB-",5121,"HK1003-Rev.0E-3",WBS,"56605",,,,,NotStart,,,,,,,,,,,,,,,,,,,"HK1003 -Blackpoint D2 - Rev.0E DD30092021;3000  TURBOSET;3440  TURBINE PACKAGE - GAS TURBINE + AUXILIARY SYSTEMS  MB;3440.05   GAS TURBINE GENERAL ACTIVITIES  MB-"
1.8.7,56600,"3221 ST GENERATOR AUXILIARY SYSTEMS MK",5121,"HK1003-Rev.0E-3",WBS,"56574",,,,100,Complete,,,,,,,,,0,,0,,0,,0,,,,"HK1003 -Blackpoint D2 - Rev.0E DD30092021;3000  TURBOSET"
1.8.7.1,56603,"3221.30 SEAL OIL SYSTEM MKW",5121,"HK1003-Rev.0E-3",WBS,"56600",,,,,NotStart,,,,,,,,,,,,,,,,,,,"HK1003 -Blackpoint D2 - Rev.0E DD30092021;3000  TURBOSET;3221 ST GENERATOR AUXILIARY SYSTEMS MK"
1.8.7.2,56602,"3221.25  GAS SYSTEM MKG",5121,"HK1003-Rev.0E-3",WBS,"56600",,,,,NotStart,,,,,,,,,,,,,,,,,,,"HK1003 -Blackpoint D2 - Rev.0E DD30092021;3000  TURBOSET;3221 ST GENERATOR AUXILIARY SYSTEMS MK"
1.8.7.3,56601,"3221.20   ST GENERATOR SKIDS (COOLER, ...)  MKA",5121,"HK1003-Rev.0E-3",WBS,"56600",,,,,NotStart,,,,,,,,,,,,,,,,,,,"HK1003 -Blackpoint D2 - Rev.0E DD30092021;3000  TURBOSET;3221 ST GENERATOR AUXILIARY SYSTEMS MK"
1.8.8,56597,"3200  TURBINE PACKAGE - GENERATOR FOR STEAM TURBINE  MK",5121,"HK1003-Rev.0E-3",WBS,"56574",,,,100,Complete,,,,,,,,,0,,0,,0,,0,,,,"HK1003 -Blackpoint D2 - Rev.0E DD30092021;3000  TURBOSET"
1.8.8.1,56599,"3200.15  ST GENERATOR  MKA",5121,"HK1003-Rev.0E-3",WBS,"56597",,,,,NotStart,,,,,,,,,,,,,,,,,,,"HK1003 -Blackpoint D2 - Rev.0E DD30092021;3000  TURBOSET;3200  TURBINE PACKAGE - GENERATOR FOR STEAM TURBINE  MK"
1.8.8.2,56598,"3200.10  ST GENERATOR ENGINEERING TRANSMITTAL SCHEDULE",5121,"HK1003-Rev.0E-3",WBS,"56597",,,,,NotStart,,,,,,,,,,,,,,,,,,,"HK1003 -Blackpoint D2 - Rev.0E DD30092021;3000  TURBOSET;3200  TURBINE PACKAGE - GENERATOR FOR STEAM TURBINE  MK"
1.8.9,56596,"3170  CONDENSER  MAG",5121,"HK1003-Rev.0E-3",WBS,"56574",,,,,NotStart,,,,,,,,,,,,,,,,,,,"HK1003 -Blackpoint D2 - Rev.0E DD30092021;3000  TURBOSET"
1.8.10,56585,"3121  STEAM TURBINE AUXILIARY SYSTEMS  MA-",5121,"HK1003-Rev.0E-3",WBS,"56574",,,,100,Complete,,,,,,,,,0,,0,,0,,0,,,,"HK1003 -Blackpoint D2 - Rev.0E DD30092021;3000  TURBOSET"
1.8.10.1,56593,"3121.70 STEAM TURBINE ENCLOSURE MPB20",5121,"HK1003-Rev.0E-3",WBS,"56585",,,,100,Complete,,,,,,,,,0,,0,,0,,0,,,,"HK1003 -Blackpoint D2 - Rev.0E DD30092021;3000  TURBOSET;3121  STEAM TURBINE AUXILIARY SYSTEMS  MA-"
1.8.10.1.1,56595,"3121.70.10 STEAM TURBINE ENCLOSURE MPB20",5121,"HK1003-Rev.0E-3",WBS,"56593",,,,,NotStart,,,,,,,,,,,,,,,,,,,"HK1003 -Blackpoint D2 - Rev.0E DD30092021;3000  TURBOSET;3121  STEAM TURBINE AUXILIARY SYSTEMS  MA-;3121.70 STEAM TURBINE ENCLOSURE MPB20"
1.8.10.1.2,56594,"3121.70.05 STEAM TURBINE ENCLOSURE SOFTWARE SUBMITTAL",5121,"HK1003-Rev.0E-3",WBS,"56593",,,,,NotStart,,,,,,,,,,,,,,,,,,,"HK1003 -Blackpoint D2 - Rev.0E DD30092021;3000  TURBOSET;3121  STEAM TURBINE AUXILIARY SYSTEMS  MA-;3121.70 STEAM TURBINE ENCLOSURE MPB20"
1.8.10.2,56592,"3121.25 ST AUXILIAIRIES BYPASS MODULE MA-",5121,"HK1003-Rev.0E-3",WBS,"56585",,,,,NotStart,,,,,,,,,,,,,,,,,,,"HK1003 -Blackpoint D2 - Rev.0E DD30092021;3000  TURBOSET;3121  STEAM TURBINE AUXILIARY SYSTEMS  MA-"
1.8.10.3,56591,"3121.20 ST AUXILIARIES CONTROL OIL, PROTECTION EQUIPMENT  MAX",5121,"HK1003-Rev.0E-3",WBS,"56585",,,,,NotStart,,,,,,,,,,,,,,,,,,,"HK1003 -Blackpoint D2 - Rev.0E DD30092021;3000  TURBOSET;3121  STEAM TURBINE AUXILIARY SYSTEMS  MA-"
1.8.10.4,56590,"3121.15 ST AUXILIARIES SEAL & LEAK STEAM SYSTEM  GLAND STEAM CONDENSER MAW",5121,"HK1003-Rev.0E-3",WBS,"56585",,,,,NotStart,,,,,,,,,,,,,,,,,,,"HK1003 -Blackpoint D2 - Rev.0E DD30092021;3000  TURBOSET;3121  STEAM TURBINE AUXILIARY SYSTEMS  MA-"
1.8.10.5,56587,"3121.10 ST AUXILIARIES OIL COMPONENTS  MAV",5121,"HK1003-Rev.0E-3",WBS,"56585",,,,100,Complete,,,,,,,,,0,,0,,0,,0,,,,"HK1003 -Blackpoint D2 - Rev.0E DD30092021;3000  TURBOSET;3121  STEAM TURBINE AUXILIARY SYSTEMS  MA-"
1.8.10.5.1,56589,"3121.10.10 ST AUXILIARIES LUBE OIL FOR OIL FLUSHING",5121,"HK1003-Rev.0E-3",WBS,"56587",,,,,NotStart,,,,,,,,,,,,,,,,,,,"HK1003 -Blackpoint D2 - Rev.0E DD30092021;3000  TURBOSET;3121  STEAM TURBINE AUXILIARY SYSTEMS  MA-;3121.10 ST AUXILIARIES OIL COMPONENTS  MAV"
1.8.10.5.2,56588,"3121.10.05 ST AUXILIARIES LUBE OIL MODULE  MAV",5121,"HK1003-Rev.0E-3",WBS,"56587",,,,,NotStart,,,,,,,,,,,,,,,,,,,"HK1003 -Blackpoint D2 - Rev.0E DD30092021;3000  TURBOSET;3121  STEAM TURBINE AUXILIARY SYSTEMS  MA-;3121.10 ST AUXILIARIES OIL COMPONENTS  MAV"
1.8.10.6,56586,"3121.05 ST AUXILIARIES BEARINGS  MAD",5121,"HK1003-Rev.0E-3",WBS,"56585",,,,,NotStart,,,,,,,,,,,,,,,,,,,"HK1003 -Blackpoint D2 - Rev.0E DD30092021;3000  TURBOSET;3121  STEAM TURBINE AUXILIARY SYSTEMS  MA-"
1.8.11,56575,"3100  TURBINE PACKAGE - STEAM TURBINE MAIN COMPONENTS  MA",5121,"HK1003-Rev.0E-3",WBS,"56574",,,,100,Complete,,,,,,,,,0,,0,,0,,0,,,,"HK1003 -Blackpoint D2 - Rev.0E DD30092021;3000  TURBOSET"
1.8.11.1,56581,"3100.15  STEAM TURBINE  MA-",5121,"HK1003-Rev.0E-3",WBS,"56575",,,,100,Complete,,,,,,,,,0,,0,,0,,0,,,,"HK1003 -Blackpoint D2 - Rev.0E DD30092021;3000  TURBOSET;3100  TURBINE PACKAGE - STEAM TURBINE MAIN COMPONENTS  MA"
1.8.11.1.1,56584,"3100.15..25  STEAM TURBINE VALVES & AUX.  MA-",5121,"HK1003-Rev.0E-3",WBS,"56581",,,,,NotStart,,,,,,,,,,,,,,,,,,,"HK1003 -Blackpoint D2 - Rev.0E DD30092021;3000  TURBOSET;3100  TURBINE PACKAGE - STEAM TURBINE MAIN COMPONENTS  MA;3100.15  STEAM TURBINE  MA-"
1.8.11.1.2,56583,"3100.15.10  STEAM TURBINE (LP-OUTERCASING)  MAA",5121,"HK1003-Rev.0E-3",WBS,"56581",,,,,NotStart,,,,,,,,,,,,,,,,,,,"HK1003 -Blackpoint D2 - Rev.0E DD30092021;3000  TURBOSET;3100  TURBINE PACKAGE - STEAM TURBINE MAIN COMPONENTS  MA;3100.15  STEAM TURBINE  MA-"
1.8.11.1.3,56582,"3100.15.05  STEAM TURBINE (HE-TYPE)  MAA",5121,"HK1003-Rev.0E-3",WBS,"56581",,,,,NotStart,,,,,,,,,,,,,,,,,,,"HK1003 -Blackpoint D2 - Rev.0E DD30092021;3000  TURBOSET;3100  TURBINE PACKAGE - STEAM TURBINE MAIN COMPONENTS  MA;3100.15  STEAM TURBINE  MA-"
1.8.11.2,56578,"3100.05  STEAM TURBINE ENGINEERING  MA-",5121,"HK1003-Rev.0E-3",WBS,"56575",,,,100,Complete,,,,,,,,,0,,0,,0,,0,,,,"HK1003 -Blackpoint D2 - Rev.0E DD30092021;3000  TURBOSET;3100  TURBINE PACKAGE - STEAM TURBINE MAIN COMPONENTS  MA"
1.8.11.2.1,56580,"3100.05.10 STEAM TURBINE SOFTWARE SUBMITTAL SCHEDULE  MA-",5121,"HK1003-Rev.0E-3",WBS,"56578",,,,,NotStart,,,,,,,,,,,,,,,,,,,"HK1003 -Blackpoint D2 - Rev.0E DD30092021;3000  TURBOSET;3100  TURBINE PACKAGE - STEAM TURBINE MAIN COMPONENTS  MA;3100.05  STEAM TURBINE ENGINEERING  MA-"
1.8.11.2.2,56579,"3100.05.05 STEAM TURBINE TRANSMITTAL REQUEST SCHEDULE (AAP)",5121,"HK1003-Rev.0E-3",WBS,"56578",,,,,NotStart,,,,,,,,,,,,,,,,,,,"HK1003 -Blackpoint D2 - Rev.0E DD30092021;3000  TURBOSET;3100  TURBINE PACKAGE - STEAM TURBINE MAIN COMPONENTS  MA;3100.05  STEAM TURBINE ENGINEERING  MA-"
1.8.11.3,56577,"3445.10  STEAM TURBINE ENGINEERING REQUEST SCHEDULE",5121,"HK1003-Rev.0E-3",WBS,"56575",,,,,NotStart,,,,,,,,,,,,,,,,,,,"HK1003 -Blackpoint D2 - Rev.0E DD30092021;3000  TURBOSET;3100  TURBINE PACKAGE - STEAM TURBINE MAIN COMPONENTS  MA"
1.8.11.4,56576,"3445.05  STEAM TURBINE ENGINEERING TRANSMITTAL SCHEDULE (AAP)",5121,"HK1003-Rev.0E-3",WBS,"56575",,,,,NotStart,,,,,,,,,,,,,,,,,,,"HK1003 -Blackpoint D2 - Rev.0E DD30092021;3000  TURBOSET;3100  TURBINE PACKAGE - STEAM TURBINE MAIN COMPONENTS  MA"
1.9,56557,"2000  STEAM GENERATOR + AUXILIARY EQUIPMENT",5121,"HK1003-Rev.0E-3",WBS,"55902",,,,100,Complete,,,,,,,,,0,,0,,0,,0,,,,"HK1003 -Blackpoint D2 - Rev.0E DD30092021"
1.9.1,56571,"2571  GASEOUS FUEL TRANSPORT, TREATMENT + FEEDING  EK",5121,"HK1003-Rev.0E-3",WBS,"56557",,,,100,Complete,,,,,,,,,0,,0,,0,,0,,,,"HK1003 -Blackpoint D2 - Rev.0E DD30092021;2000  STEAM GENERATOR + AUXILIARY EQUIPMENT"
1.9.1.1,56573,"2571.10  FUEL GAS PREHEATER (OPTION)  EKC",5121,"HK1003-Rev.0E-3",WBS,"56571",,,,,NotStart,,,,,,,,,,,,,,,,,,,"HK1003 -Blackpoint D2 - Rev.0E DD30092021;2000  STEAM GENERATOR + AUXILIARY EQUIPMENT;2571  GASEOUS FUEL TRANSPORT, TREATMENT + FEEDING  EK"
1.9.1.2,56572,"2571.05  FUEL GAS FILTER / METERING / REDUCING STATION  EK-",5121,"HK1003-Rev.0E-3",WBS,"56571",,,,,NotStart,,,,,,,,,,,,,,,,,,,"HK1003 -Blackpoint D2 - Rev.0E DD30092021;2000  STEAM GENERATOR + AUXILIARY EQUIPMENT;2571  GASEOUS FUEL TRANSPORT, TREATMENT + FEEDING  EK"
1.9.2,56569,"2521  FUEL OIL FORWARDING SYSTEM  EG",5121,"HK1003-Rev.0E-3",WBS,"56557",,,,100,Complete,,,,,,,,,0,,0,,0,,0,,,,"HK1003 -Blackpoint D2 - Rev.0E DD30092021;2000  STEAM GENERATOR + AUXILIARY EQUIPMENT"
1.9.2.1,56570,"2521.05  FUEL OIL/FORWARDING SYSTEM  EG-",5121,"HK1003-Rev.0E-3",WBS,"56569",,,,,NotStart,,,,,,,,,,,,,,,,,,,"HK1003 -Blackpoint D2 - Rev.0E DD30092021;2000  STEAM GENERATOR + AUXILIARY EQUIPMENT;2521  FUEL OIL FORWARDING SYSTEM  EG"
1.9.3,56567,"2511  FUEL OIL STORAGE, FORWARDING + TREATMENT SYS.  EG",5121,"HK1003-Rev.0E-3",WBS,"56557",,,,100,Complete,,,,,,,,,0,,0,,0,,0,,,,"HK1003 -Blackpoint D2 - Rev.0E DD30092021;2000  STEAM GENERATOR + AUXILIARY EQUIPMENT"
1.9.3.1,56568,"2511.05  FUEL OIL STORAGE TANK  EGB",5121,"HK1003-Rev.0E-3",WBS,"56567",,,,,NotStart,,,,,,,,,,,,,,,,,,,"HK1003 -Blackpoint D2 - Rev.0E DD30092021;2000  STEAM GENERATOR + AUXILIARY EQUIPMENT;2511  FUEL OIL STORAGE, FORWARDING + TREATMENT SYS.  EG"
1.9.4,56565,"2231  AUXILIARY STEAM GENERATING SYSTEM  QH",5121,"HK1003-Rev.0E-3",WBS,"56557",,,,100,Complete,,,,,,,,,0,,0,,0,,0,,,,"HK1003 -Blackpoint D2 - Rev.0E DD30092021;2000  STEAM GENERATOR + AUXILIARY EQUIPMENT"
1.9.4.1,56566,"2231.05  AUXILIARY BOILER  QH-",5121,"HK1003-Rev.0E-3",WBS,"56565",,,,,NotStart,,,,,,,,,,,,,,,,,,,"HK1003 -Blackpoint D2 - Rev.0E DD30092021;2000  STEAM GENERATOR + AUXILIARY EQUIPMENT;2231  AUXILIARY STEAM GENERATING SYSTEM  QH"
1.9.5,56558,"2201  HEAT RECOVERY STEAM GENERATOR  HRSG",5121,"HK1003-Rev.0E-3",WBS,"56557",,,,100,Complete,,,,,,,,,0,,0,,0,,0,,,,"HK1003 -Blackpoint D2 - Rev.0E DD30092021;2000  STEAM GENERATOR + AUXILIARY EQUIPMENT"
1.9.5.1,56564,"2201.35  COMMISSIONING  HRSG",5121,"HK1003-Rev.0E-3",WBS,"56558",,,,,NotStart,,,,,,,,,,,,,,,,,,,"HK1003 -Blackpoint D2 - Rev.0E DD30092021;2000  STEAM GENERATOR + AUXILIARY EQUIPMENT;2201  HEAT RECOVERY STEAM GENERATOR  HRSG"
1.9.5.2,56563,"2201.25  I&C EQUIPMENT  HRSG",5121,"HK1003-Rev.0E-3",WBS,"56558",,,,,NotStart,,,,,,,,,,,,,,,,,,,"HK1003 -Blackpoint D2 - Rev.0E DD30092021;2000  STEAM GENERATOR + AUXILIARY EQUIPMENT;2201  HEAT RECOVERY STEAM GENERATOR  HRSG"
1.9.5.3,56562,"2201.22  ELECTRICAL DESIGN  HRSG",5121,"HK1003-Rev.0E-3",WBS,"56558",,,,,NotStart,,,,,,,,,,,,,,,,,,,"HK1003 -Blackpoint D2 - Rev.0E DD30092021;2000  STEAM GENERATOR + AUXILIARY EQUIPMENT;2201  HEAT RECOVERY STEAM GENERATOR  HRSG"
1.9.5.4,56561,"2201.20  MECHANICAL EQUIPMENT  HRSG",5121,"HK1003-Rev.0E-3",WBS,"56558",,,,,NotStart,,,,,,,,,,,,,,,,,,,"HK1003 -Blackpoint D2 - Rev.0E DD30092021;2000  STEAM GENERATOR + AUXILIARY EQUIPMENT;2201  HEAT RECOVERY STEAM GENERATOR  HRSG"
1.9.5.5,56560,"2201.15  STEEL STRUCTURE  HRSG",5121,"HK1003-Rev.0E-3",WBS,"56558",,,,,NotStart,,,,,,,,,,,,,,,,,,,"HK1003 -Blackpoint D2 - Rev.0E DD30092021;2000  STEAM GENERATOR + AUXILIARY EQUIPMENT;2201  HEAT RECOVERY STEAM GENERATOR  HRSG"
1.9.5.6,56559,"2201.05  BASIC DESIGN + ORDERING  HRSG",5121,"HK1003-Rev.0E-3",WBS,"56558",,,,,NotStart,,,,,,,,,,,,,,,,,,,"HK1003 -Blackpoint D2 - Rev.0E DD30092021;2000  STEAM GENERATOR + AUXILIARY EQUIPMENT;2201  HEAT RECOVERY STEAM GENERATOR  HRSG"
1.10,56519,"0000  OVERALL PROJECT",5121,"HK1003-Rev.0E-3",WBS,"55902",,,,100,Complete,,,,,,,,,0,,0,,0,,0,,,,"HK1003 -Blackpoint D2 - Rev.0E DD30092021"
1.10.1,56556,"0180  SITE MOBILIZATION",5121,"HK1003-Rev.0E-3",WBS,"56519",,,,,NotStart,,,,,,,,,,,,,,,,,,,"HK1003 -Blackpoint D2 - Rev.0E DD30092021;0000  OVERALL PROJECT"
1.10.2,56555,"0170  PLOT PLAN DESIGN",5121,"HK1003-Rev.0E-3",WBS,"56519",,,,,NotStart,,,,,,,,,,,,,,,,,,,"HK1003 -Blackpoint D2 - Rev.0E DD30092021;0000  OVERALL PROJECT"
1.10.3,56547,"0160  GENERAL CONTRACTING",5121,"HK1003-Rev.0E-3",WBS,"56519",,,,100,Complete,,,,,,,,,0,,0,,0,,0,,,,"HK1003 -Blackpoint D2 - Rev.0E DD30092021;0000  OVERALL PROJECT"
1.10.3.1,56554,"0160.25  KKS PLANT LABELLING CONTRACT",5121,"HK1003-Rev.0E-3",WBS,"56547",,,,,NotStart,,,,,,,,,,,,,,,,,,,"HK1003 -Blackpoint D2 - Rev.0E DD30092021;0000  OVERALL PROJECT;0160  GENERAL CONTRACTING"
1.10.3.2,56553,"0160.20  ERECTION CONTRACTS",5121,"HK1003-Rev.0E-3",WBS,"56547",,,,,NotStart,,,,,,,,,,,,,,,,,,,"HK1003 -Blackpoint D2 - Rev.0E DD30092021;0000  OVERALL PROJECT;0160  GENERAL CONTRACTING"
1.10.3.3,56552,"0160.17  TENDERING DESIGN & CONSTRUCT UCA/UST/UYE/UGV",5121,"HK1003-Rev.0E-3",WBS,"56547",,,,,NotStart,,,,,,,,,,,,,,,,,,,"HK1003 -Blackpoint D2 - Rev.0E DD30092021;0000  OVERALL PROJECT;0160  GENERAL CONTRACTING"
1.10.3.4,56551,"0160.16  TENDERING DESIGN & CONSTRUCT URA/URL/URD",5121,"HK1003-Rev.0E-3",WBS,"56547",,,,,NotStart,,,,,,,,,,,,,,,,,,,"HK1003 -Blackpoint D2 - Rev.0E DD30092021;0000  OVERALL PROJECT;0160  GENERAL CONTRACTING"
1.10.3.5,56550,"0160.15  EXTERNAL DETAIL DESIGNER TENDERING",5121,"HK1003-Rev.0E-3",WBS,"56547",,,,,NotStart,,,,,,,,,,,,,,,,,,,"HK1003 -Blackpoint D2 - Rev.0E DD30092021;0000  OVERALL PROJECT;0160  GENERAL CONTRACTING"
1.10.3.6,56549,"0160.10  STEEL WORKS TENDERING",5121,"HK1003-Rev.0E-3",WBS,"56547",,,,,NotStart,,,,,,,,,,,,,,,,,,,"HK1003 -Blackpoint D2 - Rev.0E DD30092021;0000  OVERALL PROJECT;0160  GENERAL CONTRACTING"
1.10.3.7,56548,"0160.05  CIVIL WORKS TENDERING",5121,"HK1003-Rev.0E-3",WBS,"56547",,,,,NotStart,,,,,,,,,,,,,,,,,,,"HK1003 -Blackpoint D2 - Rev.0E DD30092021;0000  OVERALL PROJECT;0160  GENERAL CONTRACTING"
1.10.4,56542,"0150  GENERAL PLANT CONCEPTS",5121,"HK1003-Rev.0E-3",WBS,"56519",,,,100,Complete,,,,,,,,,0,,0,,0,,0,,,,"HK1003 -Blackpoint D2 - Rev.0E DD30092021;0000  OVERALL PROJECT"
1.10.4.1,56546,"0150.20  COLOUR SCHEME + ARCHITECTURAL CONCEPTS",5121,"HK1003-Rev.0E-3",WBS,"56542",,,,,NotStart,,,,,,,,,,,,,,,,,,,"HK1003 -Blackpoint D2 - Rev.0E DD30092021;0000  OVERALL PROJECT;0150  GENERAL PLANT CONCEPTS"
1.10.4.2,56545,"0150.15  DESIGN CRITERIA",5121,"HK1003-Rev.0E-3",WBS,"56542",,,,,NotStart,,,,,,,,,,,,,,,,,,,"HK1003 -Blackpoint D2 - Rev.0E DD30092021;0000  OVERALL PROJECT;0150  GENERAL PLANT CONCEPTS"
1.10.4.3,56544,"0150.10  NOISE PROTECTION CONCEPTS",5121,"HK1003-Rev.0E-3",WBS,"56542",,,,,NotStart,,,,,,,,,,,,,,,,,,,"HK1003 -Blackpoint D2 - Rev.0E DD30092021;0000  OVERALL PROJECT;0150  GENERAL PLANT CONCEPTS"
1.10.4.4,56543,"0150.05  FIRE FIGHTING + EXPLOSION PROTECTION CONCEPTS",5121,"HK1003-Rev.0E-3",WBS,"56542",,,,,NotStart,,,,,,,,,,,,,,,,,,,"HK1003 -Blackpoint D2 - Rev.0E DD30092021;0000  OVERALL PROJECT;0150  GENERAL PLANT CONCEPTS"
1.10.5,56535,"0140  DOCUMENTATION",5121,"HK1003-Rev.0E-3",WBS,"56519",,,,100,Complete,,,,,,,,,0,,0,,0,,0,,,,"HK1003 -Blackpoint D2 - Rev.0E DD30092021;0000  OVERALL PROJECT"
1.10.5.1,56541,"0140.30  PRIMAVERA GROUPS AS BUILT",5121,"HK1003-Rev.0E-3",WBS,"56535",,,,,NotStart,,,,,,,,,,,,,,,,,,,"HK1003 -Blackpoint D2 - Rev.0E DD30092021;0000  OVERALL PROJECT;0140  DOCUMENTATION"
1.10.5.2,56540,"0140.25  PRIMAVERA GROUPS FINAL",5121,"HK1003-Rev.0E-3",WBS,"56535",,,,,NotStart,,,,,,,,,,,,,,,,,,,"HK1003 -Blackpoint D2 - Rev.0E DD30092021;0000  OVERALL PROJECT;0140  DOCUMENTATION"
1.10.5.3,56539,"0140.20  PRIMAVERA GROUPS PRELIMINARY",5121,"HK1003-Rev.0E-3",WBS,"56535",,,,,NotStart,,,,,,,,,,,,,,,,,,,"HK1003 -Blackpoint D2 - Rev.0E DD30092021;0000  OVERALL PROJECT;0140  DOCUMENTATION"
1.10.5.4,56538,"0140.15  SOFTWARE DELIVERABLES CONSTRUCTION / COMMISSIONING",5121,"HK1003-Rev.0E-3",WBS,"56535",,,,,NotStart,,,,,,,,,,,,,,,,,,,"HK1003 -Blackpoint D2 - Rev.0E DD30092021;0000  OVERALL PROJECT;0140  DOCUMENTATION"
1.10.5.5,56537,"0140.10  OPERATING MANUAL (OM/BHB)",5121,"HK1003-Rev.0E-3",WBS,"56535",,,,,NotStart,,,,,,,,,,,,,,,,,,,"HK1003 -Blackpoint D2 - Rev.0E DD30092021;0000  OVERALL PROJECT;0140  DOCUMENTATION"
1.10.5.6,56536,"0140.05  OPERATION + MAINTENANCE DOCUMENTATION",5121,"HK1003-Rev.0E-3",WBS,"56535",,,,,NotStart,,,,,,,,,,,,,,,,,,,"HK1003 -Blackpoint D2 - Rev.0E DD30092021;0000  OVERALL PROJECT;0140  DOCUMENTATION"
1.10.6,56532,"0130  PROJECT SETUP",5121,"HK1003-Rev.0E-3",WBS,"56519",,,,100,Complete,,,,,,,,,0,,0,,0,,0,,,,"HK1003 -Blackpoint D2 - Rev.0E DD30092021;0000  OVERALL PROJECT"
1.10.6.1,56534,"0130.10  COMMERCIAL PROJECT MANAGEMENT",5121,"HK1003-Rev.0E-3",WBS,"56532",,,,,NotStart,,,,,,,,,,,,,,,,,,,"HK1003 -Blackpoint D2 - Rev.0E DD30092021;0000  OVERALL PROJECT;0130  PROJECT SETUP"
1.10.6.2,56533,"0130.05  TECHNICAL CONTRACT CONIDITIONS",5121,"HK1003-Rev.0E-3",WBS,"56532",,,,,NotStart,,,,,,,,,,,,,,,,,,,"HK1003 -Blackpoint D2 - Rev.0E DD30092021;0000  OVERALL PROJECT;0130  PROJECT SETUP"
1.10.7,56524,"0120  KEY DATES",5121,"HK1003-Rev.0E-3",WBS,"56519",,,,100,Complete,,,,,,,,,0,,0,,0,,0,,,,"HK1003 -Blackpoint D2 - Rev.0E DD30092021;0000  OVERALL PROJECT"
1.10.7.1,56531,"0120.35  KEY DATES COMMISSIONING",5121,"HK1003-Rev.0E-3",WBS,"56524",,,,,NotStart,,,,,,,,,,,,,,,,,,,"HK1003 -Blackpoint D2 - Rev.0E DD30092021;0000  OVERALL PROJECT;0120  KEY DATES"
1.10.7.2,56530,"0120.30  KEY DATES BOILER (HRSG)",5121,"HK1003-Rev.0E-3",WBS,"56524",,,,,NotStart,,,,,,,,,,,,,,,,,,,"HK1003 -Blackpoint D2 - Rev.0E DD30092021;0000  OVERALL PROJECT;0120  KEY DATES"
1.10.7.3,56529,"0120.25  KEY DATES STEAM TURBINE / CONDENSER",5121,"HK1003-Rev.0E-3",WBS,"56524",,,,,NotStart,,,,,,,,,,,,,,,,,,,"HK1003 -Blackpoint D2 - Rev.0E DD30092021;0000  OVERALL PROJECT;0120  KEY DATES"
1.10.7.4,56528,"0120.20  KEY DATES GAS TURBINE / GENERATOR",5121,"HK1003-Rev.0E-3",WBS,"56524",,,,,NotStart,,,,,,,,,,,,,,,,,,,"HK1003 -Blackpoint D2 - Rev.0E DD30092021;0000  OVERALL PROJECT;0120  KEY DATES"
1.10.7.5,56527,"0120.15  KEY DATES ELECTRICAL / I&C",5121,"HK1003-Rev.0E-3",WBS,"56524",,,,,NotStart,,,,,,,,,,,,,,,,,,,"HK1003 -Blackpoint D2 - Rev.0E DD30092021;0000  OVERALL PROJECT;0120  KEY DATES"
1.10.7.6,56526,"0120.10  KEY DATES MECHANICAL",5121,"HK1003-Rev.0E-3",WBS,"56524",,,,,NotStart,,,,,,,,,,,,,,,,,,,"HK1003 -Blackpoint D2 - Rev.0E DD30092021;0000  OVERALL PROJECT;0120  KEY DATES"
1.10.7.7,56525,"0120.05  KEY DATES CIVIL CONSTRUCTION",5121,"HK1003-Rev.0E-3",WBS,"56524",,,,,NotStart,,,,,,,,,,,,,,,,,,,"HK1003 -Blackpoint D2 - Rev.0E DD30092021;0000  OVERALL PROJECT;0120  KEY DATES"
1.10.8,56522,"0110  TERMINAL POINTS",5121,"HK1003-Rev.0E-3",WBS,"56519",,,,100,Complete,,,,,,,,,0,,0,,0,,0,,,,"HK1003 -Blackpoint D2 - Rev.0E DD30092021;0000  OVERALL PROJECT"
1.10.8.1,56523,"0110.05  TERMINAL POINTS WITH CLIENT",5121,"HK1003-Rev.0E-3",WBS,"56522",,,,,NotStart,,,,,,,,,,,,,,,,,,,"HK1003 -Blackpoint D2 - Rev.0E DD30092021;0000  OVERALL PROJECT;0110  TERMINAL POINTS"
1.10.9,56520,"0100  CONTRACT DATES",5121,"HK1003-Rev.0E-3",WBS,"56519",,,,100,Complete,,,,,,,,,0,,0,,0,,0,,,,"HK1003 -Blackpoint D2 - Rev.0E DD30092021;0000  OVERALL PROJECT"
1.10.9.1,56521,"0100.05  CONTRACT MILESTONES / INTERFACE EVENTS WITH CLIENT",5121,"HK1003-Rev.0E-3",WBS,"56520",,,,,NotStart,,,,,,,,,,,,,,,,,,,"HK1003 -Blackpoint D2 - Rev.0E DD30092021;0000  OVERALL PROJECT;0100  CONTRACT DATES"
1.11,56518,"S",5121,"HK1003-Rev.0E-3",WBS,"55902",,,,,NotStart,,,,,,,,,,,,,,,,,,,"HK1003 -Blackpoint D2 - Rev.0E DD30092021"
1.12,55934,"PR",5121,"HK1003-Rev.0E-3",WBS,"55902",,,,100,Complete,,,,,,,,,0,,0,,0,,0,,,,"HK1003 -Blackpoint D2 - Rev.0E DD30092021"
1.12.1,56508,"9000 SITE",5121,"HK1003-Rev.0E-3",WBS,"55934",,,,100,Complete,,,,,,,,,0,,0,,0,,0,,,,"HK1003 -Blackpoint D2 - Rev.0E DD30092021;PR"
1.12.1.1,56515,"9901 SITE / SITE INFRASTRUCTURE",5121,"HK1003-Rev.0E-3",WBS,"56508",,,,100,Complete,,,,,,,,,0,,0,,0,,0,,,,"HK1003 -Blackpoint D2 - Rev.0E DD30092021;PR;9000 SITE"
1.12.1.1.1,56517,"9901.10 TEMPORARY SITE INSTALLATION",5121,"HK1003-Rev.0E-3",WBS,"56515",,,,,NotStart,,,,,,,,,,,,,,,,,,,"HK1003 -Blackpoint D2 - Rev.0E DD30092021;PR;9000 SITE;9901 SITE / SITE INFRASTRUCTURE"
1.12.1.1.2,56516,"9901.05 SITE PREPARATION",5121,"HK1003-Rev.0E-3",WBS,"56515",,,,,NotStart,,,,,,,,,,,,,,,,,,,"HK1003 -Blackpoint D2 - Rev.0E DD30092021;PR;9000 SITE;9901 SITE / SITE INFRASTRUCTURE"
1.12.1.2,56509,"9800 PLANT COMMISSIONING",5121,"HK1003-Rev.0E-3",WBS,"56508",,,,100,Complete,,,,,,,,,0,,0,,0,,0,,,,"HK1003 -Blackpoint D2 - Rev.0E DD30092021;PR;9000 SITE"
1.12.1.2.1,56514,"9800.10 PERFORMANCE TEST & TRIAL RUN",5121,"HK1003-Rev.0E-3",WBS,"56509",,,,,NotStart,,,,,,,,,,,,,,,,,,,"HK1003 -Blackpoint D2 - Rev.0E DD30092021;PR;9000 SITE;9800 PLANT COMMISSIONING"
1.12.1.2.2,56510,"9800.05 PLANT COMMISSIONING / CHEMICAL CLEANING / STEAM BLOW",5121,"HK1003-Rev.0E-3",WBS,"56509",,,,100,Complete,,,,,,,,,0,,0,,0,,0,,,,"HK1003 -Blackpoint D2 - Rev.0E DD30092021;PR;9000 SITE;9800 PLANT COMMISSIONING"
1.12.1.2.2.1,56513,"9800.05.15 PLANT COMMISSIONING",5121,"HK1003-Rev.0E-3",WBS,"56510",,,,,NotStart,,,,,,,,,,,,,,,,,,,"HK1003 -Blackpoint D2 - Rev.0E DD30092021;PR;9000 SITE;9800 PLANT COMMISSIONING;9800.05 PLANT COMMISSIONING / CHEMICAL CLEANING / STEAM BLOW"
1.12.1.2.2.2,56512,"9800.05.10 CHEMICAL CLEANING / STEAM BLOWING",5121,"HK1003-Rev.0E-3",WBS,"56510",,,,,NotStart,,,,,,,,,,,,,,,,,,,"HK1003 -Blackpoint D2 - Rev.0E DD30092021;PR;9000 SITE;9800 PLANT COMMISSIONING;9800.05 PLANT COMMISSIONING / CHEMICAL CLEANING / STEAM BLOW"
1.12.1.2.2.3,56511,"9800.05.05 CHEMICAL CLEANING EQUIPMENT",5121,"HK1003-Rev.0E-3",WBS,"56510",,,,,NotStart,,,,,,,,,,,,,,,,,,,"HK1003 -Blackpoint D2 - Rev.0E DD30092021;PR;9000 SITE;9800 PLANT COMMISSIONING;9800.05 PLANT COMMISSIONING / CHEMICAL CLEANING / STEAM BLOW"
1.12.2,56479,"8000 AUTOMATION / INSTRUMENTATION & CONTROL",5121,"HK1003-Rev.0E-3",WBS,"55934",,,,100,Complete,,,,,,,,,0,,0,,0,,0,,,,"HK1003 -Blackpoint D2 - Rev.0E DD30092021;PR"
1.12.2.1,56500,"8411 AUTOMATION GAS TURBINE MB-",5121,"HK1003-Rev.0E-3",WBS,"56479",,,,100,Complete,,,,,,,,,0,,0,,0,,0,,,,"HK1003 -Blackpoint D2 - Rev.0E DD30092021;PR;8000 AUTOMATION / INSTRUMENTATION & CONTROL"
1.12.2.1.1,56505,"8411.20.5 GT AUTOMATION FOR 12GT",5121,"HK1003-Rev.0E-3",WBS,"56500",,,,100,Complete,,,,,,,,,0,,0,,0,,0,,,,"HK1003 -Blackpoint D2 - Rev.0E DD30092021;PR;8000 AUTOMATION / INSTRUMENTATION & CONTROL;8411 AUTOMATION GAS TURBINE MB-"
1.12.2.1.1.1,56507,"8411.20.5.20 GT AUTOMATION REALIZATION FOR 12GT",5121,"HK1003-Rev.0E-3",WBS,"56505",,,,,NotStart,,,,,,,,,,,,,,,,,,,"HK1003 -Blackpoint D2 - Rev.0E DD30092021;PR;8000 AUTOMATION / INSTRUMENTATION & CONTROL;8411 AUTOMATION GAS TURBINE MB-;8411.20.5 GT AUTOMATION FOR 12GT"
1.12.2.1.1.2,56506,"8411.20.5.10 GT AUTOMATION PURCHASING FOR 12GT",5121,"HK1003-Rev.0E-3",WBS,"56505",,,,,NotStart,,,,,,,,,,,,,,,,,,,"HK1003 -Blackpoint D2 - Rev.0E DD30092021;PR;8000 AUTOMATION / INSTRUMENTATION & CONTROL;8411 AUTOMATION GAS TURBINE MB-;8411.20.5 GT AUTOMATION FOR 12GT"
1.12.2.1.2,56504,"8411.20 GT AUTOMATION REALIZATION",5121,"HK1003-Rev.0E-3",WBS,"56500",,,,,NotStart,,,,,,,,,,,,,,,,,,,"HK1003 -Blackpoint D2 - Rev.0E DD30092021;PR;8000 AUTOMATION / INSTRUMENTATION & CONTROL;8411 AUTOMATION GAS TURBINE MB-"
1.12.2.1.3,56503,"8411.12 GT AUTOMATION SYSTEM INTEGRATION",5121,"HK1003-Rev.0E-3",WBS,"56500",,,,,NotStart,,,,,,,,,,,,,,,,,,,"HK1003 -Blackpoint D2 - Rev.0E DD30092021;PR;8000 AUTOMATION / INSTRUMENTATION & CONTROL;8411 AUTOMATION GAS TURBINE MB-"
1.12.2.1.4,56502,"8411.11 GT AUTOMATION ORDER AND PURCHASING",5121,"HK1003-Rev.0E-3",WBS,"56500",,,,,NotStart,,,,,,,,,,,,,,,,,,,"HK1003 -Blackpoint D2 - Rev.0E DD30092021;PR;8000 AUTOMATION / INSTRUMENTATION & CONTROL;8411 AUTOMATION GAS TURBINE MB-"
1.12.2.1.5,56501,"8411.10 GT AUTOMATION PROJECT START",5121,"HK1003-Rev.0E-3",WBS,"56500",,,,,NotStart,,,,,,,,,,,,,,,,,,,"HK1003 -Blackpoint D2 - Rev.0E DD30092021;PR;8000 AUTOMATION / INSTRUMENTATION & CONTROL;8411 AUTOMATION GAS TURBINE MB-"
1.12.2.2,56493,"8410 ST AUTOMATION STEAM TURBINE MA- (SmartFlex TYPE)",5121,"HK1003-Rev.0E-3",WBS,"56479",,,,100,Complete,,,,,,,,,0,,0,,0,,0,,,,"HK1003 -Blackpoint D2 - Rev.0E DD30092021;PR;8000 AUTOMATION / INSTRUMENTATION & CONTROL"
1.12.2.2.1,56499,"8410.30 ST AUTOMATION PRE-COMMISSIONING",5121,"HK1003-Rev.0E-3",WBS,"56493",,,,,NotStart,,,,,,,,,,,,,,,,,,,"HK1003 -Blackpoint D2 - Rev.0E DD30092021;PR;8000 AUTOMATION / INSTRUMENTATION & CONTROL;8410 ST AUTOMATION STEAM TURBINE MA- (SmartFlex TYPE)"
1.12.2.2.2,56498,"8410.25 ST AUTOMATION CABINET MANUFACTURING",5121,"HK1003-Rev.0E-3",WBS,"56493",,,,,NotStart,,,,,,,,,,,,,,,,,,,"HK1003 -Blackpoint D2 - Rev.0E DD30092021;PR;8000 AUTOMATION / INSTRUMENTATION & CONTROL;8410 ST AUTOMATION STEAM TURBINE MA- (SmartFlex TYPE)"
1.12.2.2.3,56497,"8410.20 ST AUTOMATION SOFTWARE ENGINEERING",5121,"HK1003-Rev.0E-3",WBS,"56493",,,,,NotStart,,,,,,,,,,,,,,,,,,,"HK1003 -Blackpoint D2 - Rev.0E DD30092021;PR;8000 AUTOMATION / INSTRUMENTATION & CONTROL;8410 ST AUTOMATION STEAM TURBINE MA- (SmartFlex TYPE)"
1.12.2.2.4,56496,"8410.15 ST AUTOMATION HARDWARE ENGINEERING",5121,"HK1003-Rev.0E-3",WBS,"56493",,,,,NotStart,,,,,,,,,,,,,,,,,,,"HK1003 -Blackpoint D2 - Rev.0E DD30092021;PR;8000 AUTOMATION / INSTRUMENTATION & CONTROL;8410 ST AUTOMATION STEAM TURBINE MA- (SmartFlex TYPE)"
1.12.2.2.5,56495,"8410.10 ST  AUTOMATION ENGINEERING START ACTIVITIES",5121,"HK1003-Rev.0E-3",WBS,"56493",,,,,NotStart,,,,,,,,,,,,,,,,,,,"HK1003 -Blackpoint D2 - Rev.0E DD30092021;PR;8000 AUTOMATION / INSTRUMENTATION & CONTROL;8410 ST AUTOMATION STEAM TURBINE MA- (SmartFlex TYPE)"
1.12.2.2.6,56494,"8410.05 ST AUTOMATION PROJECT START",5121,"HK1003-Rev.0E-3",WBS,"56493",,,,,NotStart,,,,,,,,,,,,,,,,,,,"HK1003 -Blackpoint D2 - Rev.0E DD30092021;PR;8000 AUTOMATION / INSTRUMENTATION & CONTROL;8410 ST AUTOMATION STEAM TURBINE MA- (SmartFlex TYPE)"
1.12.2.3,56492,"8160 EMISSIONS MONITORING EQUIPMENT",5121,"HK1003-Rev.0E-3",WBS,"56479",,,,,NotStart,,,,,,,,,,,,,,,,,,,"HK1003 -Blackpoint D2 - Rev.0E DD30092021;PR;8000 AUTOMATION / INSTRUMENTATION & CONTROL"
1.12.2.4,56480,"8100 AUTOMATION",5121,"HK1003-Rev.0E-3",WBS,"56479",,,,100,Complete,,,,,,,,,0,,0,,0,,0,,,,"HK1003 -Blackpoint D2 - Rev.0E DD30092021;PR;8000 AUTOMATION / INSTRUMENTATION & CONTROL"
1.12.2.4.1,56491,"8100.40 I&C ERECTION / COMMISSIONING",5121,"HK1003-Rev.0E-3",WBS,"56480",,,,,NotStart,,,,,,,,,,,,,,,,,,,"HK1003 -Blackpoint D2 - Rev.0E DD30092021;PR;8000 AUTOMATION / INSTRUMENTATION & CONTROL;8100 AUTOMATION"
1.12.2.4.2,56490,"8100.35 I&C CABLES",5121,"HK1003-Rev.0E-3",WBS,"56480",,,,,NotStart,,,,,,,,,,,,,,,,,,,"HK1003 -Blackpoint D2 - Rev.0E DD30092021;PR;8000 AUTOMATION / INSTRUMENTATION & CONTROL;8100 AUTOMATION"
1.12.2.4.3,56489,"8100.30 I&C HARDWARE FOR FIELD",5121,"HK1003-Rev.0E-3",WBS,"56480",,,,,NotStart,,,,,,,,,,,,,,,,,,,"HK1003 -Blackpoint D2 - Rev.0E DD30092021;PR;8000 AUTOMATION / INSTRUMENTATION & CONTROL;8100 AUTOMATION"
1.12.2.4.4,56488,"8100.25 I&C HARDWARE FOR CONTROL ROOM (OM/ES)",5121,"HK1003-Rev.0E-3",WBS,"56480",,,,,NotStart,,,,,,,,,,,,,,,,,,,"HK1003 -Blackpoint D2 - Rev.0E DD30092021;PR;8000 AUTOMATION / INSTRUMENTATION & CONTROL;8100 AUTOMATION"
1.12.2.4.5,56484,"8100.20 MANUFACTURING I&C HARDWARE FOR PCC",5121,"HK1003-Rev.0E-3",WBS,"56480",,,,100,Complete,,,,,,,,,0,,0,,0,,0,,,,"HK1003 -Blackpoint D2 - Rev.0E DD30092021;PR;8000 AUTOMATION / INSTRUMENTATION & CONTROL;8100 AUTOMATION"
1.12.2.4.5.1,56487,"8100.20.15 PCC UBA81",5121,"HK1003-Rev.0E-3",WBS,"56484",,,,,NotStart,,,,,,,,,,,,,,,,,,,"HK1003 -Blackpoint D2 - Rev.0E DD30092021;PR;8000 AUTOMATION / INSTRUMENTATION & CONTROL;8100 AUTOMATION;8100.20 MANUFACTURING I&C HARDWARE FOR PCC"
1.12.2.4.5.2,56486,"8100.20.10 PCC UBA63/66",5121,"HK1003-Rev.0E-3",WBS,"56484",,,,,NotStart,,,,,,,,,,,,,,,,,,,"HK1003 -Blackpoint D2 - Rev.0E DD30092021;PR;8000 AUTOMATION / INSTRUMENTATION & CONTROL;8100 AUTOMATION;8100.20 MANUFACTURING I&C HARDWARE FOR PCC"
1.12.2.4.5.3,56485,"8100.20.05 PCC UBA61",5121,"HK1003-Rev.0E-3",WBS,"56484",,,,,NotStart,,,,,,,,,,,,,,,,,,,"HK1003 -Blackpoint D2 - Rev.0E DD30092021;PR;8000 AUTOMATION / INSTRUMENTATION & CONTROL;8100 AUTOMATION;8100.20 MANUFACTURING I&C HARDWARE FOR PCC"
1.12.2.4.6,56483,"8100.15 I&C REALIZATION SOFTWARE ENGINEERING I&C SUPPLIER",5121,"HK1003-Rev.0E-3",WBS,"56480",,,,,NotStart,,,,,,,,,,,,,,,,,,,"HK1003 -Blackpoint D2 - Rev.0E DD30092021;PR;8000 AUTOMATION / INSTRUMENTATION & CONTROL;8100 AUTOMATION"
1.12.2.4.7,56482,"8100.10 AUTOMATION ENGINEERING I&C",5121,"HK1003-Rev.0E-3",WBS,"56480",,,,,NotStart,,,,,,,,,,,,,,,,,,,"HK1003 -Blackpoint D2 - Rev.0E DD30092021;PR;8000 AUTOMATION / INSTRUMENTATION & CONTROL;8100 AUTOMATION"
1.12.2.4.8,56481,"8100.05 AUTOMATION GENERAL ACTIVITIES",5121,"HK1003-Rev.0E-3",WBS,"56480",,,,,NotStart,,,,,,,,,,,,,,,,,,,"HK1003 -Blackpoint D2 - Rev.0E DD30092021;PR;8000 AUTOMATION / INSTRUMENTATION & CONTROL;8100 AUTOMATION"
1.12.3,56415,"7000 ELECTRICAL SYSTEMS",5121,"HK1003-Rev.0E-3",WBS,"55934",,,,100,Complete,,,,,,,,,0,,0,,0,,0,,,,"HK1003 -Blackpoint D2 - Rev.0E DD30092021;PR"
1.12.3.1,56478,"7840 PLANT SECURITY SYSTEM",5121,"HK1003-Rev.0E-3",WBS,"56415",,,,,NotStart,,,,,,,,,,,,,,,,,,,"HK1003 -Blackpoint D2 - Rev.0E DD30092021;PR;7000 ELECTRICAL SYSTEMS"
1.12.3.2,56476,"7830 COMMUNICATION SYSTEMS",5121,"HK1003-Rev.0E-3",WBS,"56415",,,,100,Complete,,,,,,,,,0,,0,,0,,0,,,,"HK1003 -Blackpoint D2 - Rev.0E DD30092021;PR;7000 ELECTRICAL SYSTEMS"
1.12.3.2.1,56477,"7830.05 TELEPHONE SYSTEM CYA",5121,"HK1003-Rev.0E-3",WBS,"56476",,,,,NotStart,,,,,,,,,,,,,,,,,,,"HK1003 -Blackpoint D2 - Rev.0E DD30092021;PR;7000 ELECTRICAL SYSTEMS;7830 COMMUNICATION SYSTEMS"
1.12.3.3,56473,"7810 LIGHTING / SMALL POWER BZL",5121,"HK1003-Rev.0E-3",WBS,"56415",,,,100,Complete,,,,,,,,,0,,0,,0,,0,,,,"HK1003 -Blackpoint D2 - Rev.0E DD30092021;PR;7000 ELECTRICAL SYSTEMS"
1.12.3.3.1,56475,"7810.10 LIGHTING / SMALL POWER for HRSG BZL",5121,"HK1003-Rev.0E-3",WBS,"56473",,,,,NotStart,,,,,,,,,,,,,,,,,,,"HK1003 -Blackpoint D2 - Rev.0E DD30092021;PR;7000 ELECTRICAL SYSTEMS;7810 LIGHTING / SMALL POWER BZL"
1.12.3.3.2,56474,"7810.05 LIGHTING / SMALL POWER in UMC BZL",5121,"HK1003-Rev.0E-3",WBS,"56473",,,,,NotStart,,,,,,,,,,,,,,,,,,,"HK1003 -Blackpoint D2 - Rev.0E DD30092021;PR;7000 ELECTRICAL SYSTEMS;7810 LIGHTING / SMALL POWER BZL"
1.12.3.4,56457,"7790 POWER CONTROL CENTERS (PCC) UBA",5121,"HK1003-Rev.0E-3",WBS,"56415",,,,100,Complete,,,,,,,,,0,,0,,0,,0,,,,"HK1003 -Blackpoint D2 - Rev.0E DD30092021;PR;7000 ELECTRICAL SYSTEMS"
1.12.3.4.1,56470,"7790.99  ELECTRICAL ERECTION & COMMISSIONING",5121,"HK1003-Rev.0E-3",WBS,"56457",,,,100,Complete,,,,,,,,,0,,0,,0,,0,,,,"HK1003 -Blackpoint D2 - Rev.0E DD30092021;PR;7000 ELECTRICAL SYSTEMS;7790 POWER CONTROL CENTERS (PCC) UBA"
1.12.3.4.1.1,56472,"7790.99.20 ELECTRICAL COMMISSIONING POWER CONTROL CENTER UBA UNIT 12",5121,"HK1003-Rev.0E-3",WBS,"56470",,,,,NotStart,,,,,,,,,,,,,,,,,,,"HK1003 -Blackpoint D2 - Rev.0E DD30092021;PR;7000 ELECTRICAL SYSTEMS;7790 POWER CONTROL CENTERS (PCC) UBA;7790.99  ELECTRICAL ERECTION & COMMISSIONING"
1.12.3.4.1.2,56471,"7790.99.10 ELECTRICAL COMMISSIONING POWER CONTROL CENTER UBA UNIT 11",5121,"HK1003-Rev.0E-3",WBS,"56470",,,,,NotStart,,,,,,,,,,,,,,,,,,,"HK1003 -Blackpoint D2 - Rev.0E DD30092021;PR;7000 ELECTRICAL SYSTEMS;7790 POWER CONTROL CENTERS (PCC) UBA;7790.99  ELECTRICAL ERECTION & COMMISSIONING"
1.12.3.4.2,56469,"7790.65 POWER CONTROL CENTER UBA65",5121,"HK1003-Rev.0E-3",WBS,"56457",,,,,NotStart,,,,,,,,,,,,,,,,,,,"HK1003 -Blackpoint D2 - Rev.0E DD30092021;PR;7000 ELECTRICAL SYSTEMS;7790 POWER CONTROL CENTERS (PCC) UBA"
1.12.3.4.3,56468,"7790.63 POWER CONTROL CENTER UBA63",5121,"HK1003-Rev.0E-3",WBS,"56457",,,,,NotStart,,,,,,,,,,,,,,,,,,,"HK1003 -Blackpoint D2 - Rev.0E DD30092021;PR;7000 ELECTRICAL SYSTEMS;7790 POWER CONTROL CENTERS (PCC) UBA"
1.12.3.4.4,56467,"7790.61 POWER CONTROL CENTER UBA61 & COMMON",5121,"HK1003-Rev.0E-3",WBS,"56457",,,,,NotStart,,,,,,,,,,,,,,,,,,,"HK1003 -Blackpoint D2 - Rev.0E DD30092021;PR;7000 ELECTRICAL SYSTEMS;7790 POWER CONTROL CENTERS (PCC) UBA"
1.12.3.4.5,56464,"7790.03 POWER CONTROL CENTER UBA03",5121,"HK1003-Rev.0E-3",WBS,"56457",,,,100,Complete,,,,,,,,,0,,0,,0,,0,,,,"HK1003 -Blackpoint D2 - Rev.0E DD30092021;PR;7000 ELECTRICAL SYSTEMS;7790 POWER CONTROL CENTERS (PCC) UBA"
1.12.3.4.5.1,56466,"7790.03.20 POWER CONTROL CENTER UBA03 UNIT 12",5121,"HK1003-Rev.0E-3",WBS,"56464",,,,,NotStart,,,,,,,,,,,,,,,,,,,"HK1003 -Blackpoint D2 - Rev.0E DD30092021;PR;7000 ELECTRICAL SYSTEMS;7790 POWER CONTROL CENTERS (PCC) UBA;7790.03 POWER CONTROL CENTER UBA03"
1.12.3.4.5.2,56465,"7790.03.10 POWER CONTROL CENTER UBA03 UNIT 11",5121,"HK1003-Rev.0E-3",WBS,"56464",,,,,NotStart,,,,,,,,,,,,,,,,,,,"HK1003 -Blackpoint D2 - Rev.0E DD30092021;PR;7000 ELECTRICAL SYSTEMS;7790 POWER CONTROL CENTERS (PCC) UBA;7790.03 POWER CONTROL CENTER UBA03"
1.12.3.4.6,56461,"7790.02 POWER CONTROL CENTER UBA02",5121,"HK1003-Rev.0E-3",WBS,"56457",,,,100,Complete,,,,,,,,,0,,0,,0,,0,,,,"HK1003 -Blackpoint D2 - Rev.0E DD30092021;PR;7000 ELECTRICAL SYSTEMS;7790 POWER CONTROL CENTERS (PCC) UBA"
1.12.3.4.6.1,56463,"7790.02.20 POWER CONTROL CENTER UBA02 UNIT 12",5121,"HK1003-Rev.0E-3",WBS,"56461",,,,,NotStart,,,,,,,,,,,,,,,,,,,"HK1003 -Blackpoint D2 - Rev.0E DD30092021;PR;7000 ELECTRICAL SYSTEMS;7790 POWER CONTROL CENTERS (PCC) UBA;7790.02 POWER CONTROL CENTER UBA02"
1.12.3.4.6.2,56462,"7790.02.10 POWER CONTROL CENTER UBA02 UNIT 11",5121,"HK1003-Rev.0E-3",WBS,"56461",,,,,NotStart,,,,,,,,,,,,,,,,,,,"HK1003 -Blackpoint D2 - Rev.0E DD30092021;PR;7000 ELECTRICAL SYSTEMS;7790 POWER CONTROL CENTERS (PCC) UBA;7790.02 POWER CONTROL CENTER UBA02"
1.12.3.4.7,56458,"7790.01 POWER CONTROL CENTER UBA01 & COMMON",5121,"HK1003-Rev.0E-3",WBS,"56457",,,,100,Complete,,,,,,,,,0,,0,,0,,0,,,,"HK1003 -Blackpoint D2 - Rev.0E DD30092021;PR;7000 ELECTRICAL SYSTEMS;7790 POWER CONTROL CENTERS (PCC) UBA"
1.12.3.4.7.1,56460,"7790.01.20 POWER CONTROL CENTER UBA01 UNIT 12",5121,"HK1003-Rev.0E-3",WBS,"56458",,,,,NotStart,,,,,,,,,,,,,,,,,,,"HK1003 -Blackpoint D2 - Rev.0E DD30092021;PR;7000 ELECTRICAL SYSTEMS;7790 POWER CONTROL CENTERS (PCC) UBA;7790.01 POWER CONTROL CENTER UBA01 & COMMON"
1.12.3.4.7.2,56459,"7790.01.10 POWER CONTROL CENTER UBA01 UNIT 11",5121,"HK1003-Rev.0E-3",WBS,"56458",,,,,NotStart,,,,,,,,,,,,,,,,,,,"HK1003 -Blackpoint D2 - Rev.0E DD30092021;PR;7000 ELECTRICAL SYSTEMS;7790 POWER CONTROL CENTERS (PCC) UBA;7790.01 POWER CONTROL CENTER UBA01 & COMMON"
1.12.3.5,56456,"7770 CABLE SUPPORT STRUCTURES/CABLE TRAYS BZP",5121,"HK1003-Rev.0E-3",WBS,"56415",,,,,NotStart,,,,,,,,,,,,,,,,,,,"HK1003 -Blackpoint D2 - Rev.0E DD30092021;PR;7000 ELECTRICAL SYSTEMS"
1.12.3.6,56452,"7710 MV, LV CABLES",5121,"HK1003-Rev.0E-3",WBS,"56415",,,,100,Complete,,,,,,,,,0,,0,,0,,0,,,,"HK1003 -Blackpoint D2 - Rev.0E DD30092021;PR;7000 ELECTRICAL SYSTEMS"
1.12.3.6.1,56455,"7710.10 MV / LV CABLES",5121,"HK1003-Rev.0E-3",WBS,"56452",,,,,NotStart,,,,,,,,,,,,,,,,,,,"HK1003 -Blackpoint D2 - Rev.0E DD30092021;PR;7000 ELECTRICAL SYSTEMS;7710 MV, LV CABLES"
1.12.3.6.2,56454,"7710.05 DESIGN CABLE ROUTING",5121,"HK1003-Rev.0E-3",WBS,"56452",,,,,NotStart,,,,,,,,,,,,,,,,,,,"HK1003 -Blackpoint D2 - Rev.0E DD30092021;PR;7000 ELECTRICAL SYSTEMS;7710 MV, LV CABLES"
1.12.3.6.3,56453,"7710.00 ELECTRICAL INSTALLATIONS UMC",5121,"HK1003-Rev.0E-3",WBS,"56452",,,,,NotStart,,,,,,,,,,,,,,,,,,,"HK1003 -Blackpoint D2 - Rev.0E DD30092021;PR;7000 ELECTRICAL SYSTEMS;7710 MV, LV CABLES"
1.12.3.7,56449,"7600 PROTECTION, SYNCHRON., METERING CHA",5121,"HK1003-Rev.0E-3",WBS,"56415",,,,100,Complete,,,,,,,,,0,,0,,0,,0,,,,"HK1003 -Blackpoint D2 - Rev.0E DD30092021;PR;7000 ELECTRICAL SYSTEMS"
1.12.3.7.1,56451,"7600.50 PROTECTION, SYNCHRON., METERING ST CHA",5121,"HK1003-Rev.0E-3",WBS,"56449",,,,,NotStart,,,,,,,,,,,,,,,,,,,"HK1003 -Blackpoint D2 - Rev.0E DD30092021;PR;7000 ELECTRICAL SYSTEMS;7600 PROTECTION, SYNCHRON., METERING CHA"
1.12.3.7.2,56450,"7600.10 PROTECTION, SYNCHRON., METERING GT CHA",5121,"HK1003-Rev.0E-3",WBS,"56449",,,,,NotStart,,,,,,,,,,,,,,,,,,,"HK1003 -Blackpoint D2 - Rev.0E DD30092021;PR;7000 ELECTRICAL SYSTEMS;7600 PROTECTION, SYNCHRON., METERING CHA"
1.12.3.8,56446,"7450 LV TRANSFORMERS",5121,"HK1003-Rev.0E-3",WBS,"56415",,,,100,Complete,,,,,,,,,0,,0,,0,,0,,,,"HK1003 -Blackpoint D2 - Rev.0E DD30092021;PR;7000 ELECTRICAL SYSTEMS"
1.12.3.8.1,56448,"7450.50 SEE TRANSFORMER ST MKC",5121,"HK1003-Rev.0E-3",WBS,"56446",,,,,NotStart,,,,,,,,,,,,,,,,,,,"HK1003 -Blackpoint D2 - Rev.0E DD30092021;PR;7000 ELECTRICAL SYSTEMS;7450 LV TRANSFORMERS"
1.12.3.8.2,56447,"7450.10 SEE/SFC TRANSFORMER MKC/MBJ",5121,"HK1003-Rev.0E-3",WBS,"56446",,,,,NotStart,,,,,,,,,,,,,,,,,,,"HK1003 -Blackpoint D2 - Rev.0E DD30092021;PR;7000 ELECTRICAL SYSTEMS;7450 LV TRANSFORMERS"
1.12.3.9,56443,"7420 MAIN TRANSFORMERS BAT/BBT",5121,"HK1003-Rev.0E-3",WBS,"56415",,,,100,Complete,,,,,,,,,0,,0,,0,,0,,,,"HK1003 -Blackpoint D2 - Rev.0E DD30092021;PR;7000 ELECTRICAL SYSTEMS"
1.12.3.9.1,56445,"7420.10 AUXILIARY TRANSFORMER BBT",5121,"HK1003-Rev.0E-3",WBS,"56443",,,,,NotStart,,,,,,,,,,,,,,,,,,,"HK1003 -Blackpoint D2 - Rev.0E DD30092021;PR;7000 ELECTRICAL SYSTEMS;7420 MAIN TRANSFORMERS BAT/BBT"
1.12.3.9.2,56444,"7420.05 GENERATOR TRANSFORMER BAT",5121,"HK1003-Rev.0E-3",WBS,"56443",,,,,NotStart,,,,,,,,,,,,,,,,,,,"HK1003 -Blackpoint D2 - Rev.0E DD30092021;PR;7000 ELECTRICAL SYSTEMS;7420 MAIN TRANSFORMERS BAT/BBT"
1.12.3.10,56442,"7390 INVERTERS BRU",5121,"HK1003-Rev.0E-3",WBS,"56415",,,,,NotStart,,,,,,,,,,,,,,,,,,,"HK1003 -Blackpoint D2 - Rev.0E DD30092021;PR;7000 ELECTRICAL SYSTEMS"
1.12.3.11,56440,"7350 DIESEL GENERATOR SET XK-",5121,"HK1003-Rev.0E-3",WBS,"56415",,,,100,Complete,,,,,,,,,0,,0,,0,,0,,,,"HK1003 -Blackpoint D2 - Rev.0E DD30092021;PR;7000 ELECTRICAL SYSTEMS"
1.12.3.11.1,56441,"7350.05 EMERGENCY DIESEL GENERATOR SET XKA",5121,"HK1003-Rev.0E-3",WBS,"56440",,,,,NotStart,,,,,,,,,,,,,,,,,,,"HK1003 -Blackpoint D2 - Rev.0E DD30092021;PR;7000 ELECTRICAL SYSTEMS;7350 DIESEL GENERATOR SET XK-"
1.12.3.12,56435,"7340 SEE/SFC",5121,"HK1003-Rev.0E-3",WBS,"56415",,,,100,Complete,,,,,,,,,0,,0,,0,,0,,,,"HK1003 -Blackpoint D2 - Rev.0E DD30092021;PR;7000 ELECTRICAL SYSTEMS"
1.12.3.12.1,56439,"7340.50 SEE CUBICLE ST CJN",5121,"HK1003-Rev.0E-3",WBS,"56435",,,,,NotStart,,,,,,,,,,,,,,,,,,,"HK1003 -Blackpoint D2 - Rev.0E DD30092021;PR;7000 ELECTRICAL SYSTEMS;7340 SEE/SFC"
1.12.3.12.2,56436,"7340.15 SEE/SFC CUBICLE CJT",5121,"HK1003-Rev.0E-3",WBS,"56435",,,,100,Complete,,,,,,,,,0,,0,,0,,0,,,,"HK1003 -Blackpoint D2 - Rev.0E DD30092021;PR;7000 ELECTRICAL SYSTEMS;7340 SEE/SFC"
1.12.3.12.2.1,56438,"7340.15.20 SEE/SFC CUBICLE CJT UNIT 12",5121,"HK1003-Rev.0E-3",WBS,"56436",,,,,NotStart,,,,,,,,,,,,,,,,,,,"HK1003 -Blackpoint D2 - Rev.0E DD30092021;PR;7000 ELECTRICAL SYSTEMS;7340 SEE/SFC;7340.15 SEE/SFC CUBICLE CJT"
1.12.3.12.2.2,56437,"7340.15.10 SEE/SFC CUBICLE CJT UNIT 11",5121,"HK1003-Rev.0E-3",WBS,"56436",,,,,NotStart,,,,,,,,,,,,,,,,,,,"HK1003 -Blackpoint D2 - Rev.0E DD30092021;PR;7000 ELECTRICAL SYSTEMS;7340 SEE/SFC;7340.15 SEE/SFC CUBICLE CJT"
1.12.3.13,56432,"7320 BATTERY CHARGERS; DC/DC CONVERTERS BTL; BUK/BTL/BRU",5121,"HK1003-Rev.0E-3",WBS,"56415",,,,100,Complete,,,,,,,,,0,,0,,0,,0,,,,"HK1003 -Blackpoint D2 - Rev.0E DD30092021;PR;7000 ELECTRICAL SYSTEMS"
1.12.3.13.1,56434,"7320.10 DC/DC CONVERTERS BUK/BTL/BUK",5121,"HK1003-Rev.0E-3",WBS,"56432",,,,,NotStart,,,,,,,,,,,,,,,,,,,"HK1003 -Blackpoint D2 - Rev.0E DD30092021;PR;7000 ELECTRICAL SYSTEMS;7320 BATTERY CHARGERS; DC/DC CONVERTERS BTL; BUK/BTL/BRU"
1.12.3.13.2,56433,"7320.05 BATTERY CHARGERS BTL",5121,"HK1003-Rev.0E-3",WBS,"56432",,,,,NotStart,,,,,,,,,,,,,,,,,,,"HK1003 -Blackpoint D2 - Rev.0E DD30092021;PR;7000 ELECTRICAL SYSTEMS;7320 BATTERY CHARGERS; DC/DC CONVERTERS BTL; BUK/BTL/BRU"
1.12.3.14,56431,"7310 BATTERIES BTA",5121,"HK1003-Rev.0E-3",WBS,"56415",,,,,NotStart,,,,,,,,,,,,,,,,,,,"HK1003 -Blackpoint D2 - Rev.0E DD30092021;PR;7000 ELECTRICAL SYSTEMS"
1.12.3.15,56427,"7230 LV, DC SWITCHGEAR BFE/BME; BUB/BUC",5121,"HK1003-Rev.0E-3",WBS,"56415",,,,100,Complete,,,,,,,,,0,,0,,0,,0,,,,"HK1003 -Blackpoint D2 - Rev.0E DD30092021;PR;7000 ELECTRICAL SYSTEMS"
1.12.3.15.1,56430,"7230.15 LV SWITCHGEAR",5121,"HK1003-Rev.0E-3",WBS,"56427",,,,,NotStart,,,,,,,,,,,,,,,,,,,"HK1003 -Blackpoint D2 - Rev.0E DD30092021;PR;7000 ELECTRICAL SYSTEMS;7230 LV, DC SWITCHGEAR BFE/BME; BUB/BUC"
1.12.3.15.2,56429,"7230.10 LV SWITCHGEAR BUB/BUC",5121,"HK1003-Rev.0E-3",WBS,"56427",,,,,NotStart,,,,,,,,,,,,,,,,,,,"HK1003 -Blackpoint D2 - Rev.0E DD30092021;PR;7000 ELECTRICAL SYSTEMS;7230 LV, DC SWITCHGEAR BFE/BME; BUB/BUC"
1.12.3.15.3,56428,"7230.05 LV SWITCHGEAR BFE/BME",5121,"HK1003-Rev.0E-3",WBS,"56427",,,,,NotStart,,,,,,,,,,,,,,,,,,,"HK1003 -Blackpoint D2 - Rev.0E DD30092021;PR;7000 ELECTRICAL SYSTEMS;7230 LV, DC SWITCHGEAR BFE/BME; BUB/BUC"
1.12.3.16,56426,"7210 MV SWITCHGEAR BBE",5121,"HK1003-Rev.0E-3",WBS,"56415",,,,,NotStart,,,,,,,,,,,,,,,,,,,"HK1003 -Blackpoint D2 - Rev.0E DD30092021;PR;7000 ELECTRICAL SYSTEMS"
1.12.3.17,56423,"7190 EARTHING / LIGHTNING PROTECTION BAW",5121,"HK1003-Rev.0E-3",WBS,"56415",,,,100,Complete,,,,,,,,,0,,0,,0,,0,,,,"HK1003 -Blackpoint D2 - Rev.0E DD30092021;PR;7000 ELECTRICAL SYSTEMS"
1.12.3.17.1,56425,"7190.10 LIGHTNING PROTECTION BAW",5121,"HK1003-Rev.0E-3",WBS,"56423",,,,,NotStart,,,,,,,,,,,,,,,,,,,"HK1003 -Blackpoint D2 - Rev.0E DD30092021;PR;7000 ELECTRICAL SYSTEMS;7190 EARTHING / LIGHTNING PROTECTION BAW"
1.12.3.17.2,56424,"7190.05 EARTHING BAW",5121,"HK1003-Rev.0E-3",WBS,"56423",,,,,NotStart,,,,,,,,,,,,,,,,,,,"HK1003 -Blackpoint D2 - Rev.0E DD30092021;PR;7000 ELECTRICAL SYSTEMS;7190 EARTHING / LIGHTNING PROTECTION BAW"
1.12.3.18,56422,"7153 GENERATOR CIRCUIT BREAKER BAC",5121,"HK1003-Rev.0E-3",WBS,"56415",,,,,NotStart,,,,,,,,,,,,,,,,,,,"HK1003 -Blackpoint D2 - Rev.0E DD30092021;PR;7000 ELECTRICAL SYSTEMS"
1.12.3.19,56420,"7150 GENERATOR CT GROUNDING CUBICLE BAB",5121,"HK1003-Rev.0E-3",WBS,"56415",,,,100,Complete,,,,,,,,,0,,0,,0,,0,,,,"HK1003 -Blackpoint D2 - Rev.0E DD30092021;PR;7000 ELECTRICAL SYSTEMS"
1.12.3.19.1,56421,"7150.50 GENERATOR CT + BAB CUBICLE ST",5121,"HK1003-Rev.0E-3",WBS,"56420",,,,,NotStart,,,,,,,,,,,,,,,,,,,"HK1003 -Blackpoint D2 - Rev.0E DD30092021;PR;7000 ELECTRICAL SYSTEMS;7150 GENERATOR CT GROUNDING CUBICLE BAB"
1.12.3.20,56416,"7000 GENERAL ELECTRICAL ENGINEERING",5121,"HK1003-Rev.0E-3",WBS,"56415",,,,100,Complete,,,,,,,,,0,,0,,0,,0,,,,"HK1003 -Blackpoint D2 - Rev.0E DD30092021;PR;7000 ELECTRICAL SYSTEMS"
1.12.3.20.1,56419,"7000.15 BLACK BOX SPECIFICATION",5121,"HK1003-Rev.0E-3",WBS,"56416",,,,,NotStart,,,,,,,,,,,,,,,,,,,"HK1003 -Blackpoint D2 - Rev.0E DD30092021;PR;7000 ELECTRICAL SYSTEMS;7000 GENERAL ELECTRICAL ENGINEERING"
1.12.3.20.2,56418,"7000.10 SINGLE LINE DIAGRAM",5121,"HK1003-Rev.0E-3",WBS,"56416",,,,,NotStart,,,,,,,,,,,,,,,,,,,"HK1003 -Blackpoint D2 - Rev.0E DD30092021;PR;7000 ELECTRICAL SYSTEMS;7000 GENERAL ELECTRICAL ENGINEERING"
1.12.3.20.3,56417,"7000.05 ELECTRICAL CONSUMER LIST (VEL)",5121,"HK1003-Rev.0E-3",WBS,"56416",,,,,NotStart,,,,,,,,,,,,,,,,,,,"HK1003 -Blackpoint D2 - Rev.0E DD30092021;PR;7000 ELECTRICAL SYSTEMS;7000 GENERAL ELECTRICAL ENGINEERING"
1.12.4,56272,"6000 BUILDING / STRUCTURES",5121,"HK1003-Rev.0E-3",WBS,"55934",,,,100,Complete,,,,,,,,,0,,0,,0,,0,,,,"HK1003 -Blackpoint D2 - Rev.0E DD30092021;PR"
1.12.4.1,56409,"6450 SUPPLEMENTARY STRUCTURE / YARD",5121,"HK1003-Rev.0E-3",WBS,"56272",,,,100,Complete,,,,,,,,,0,,0,,0,,0,,,,"HK1003 -Blackpoint D2 - Rev.0E DD30092021;PR;6000 BUILDING / STRUCTURES"
1.12.4.1.1,56414,"6450.10 ROADS / DRAINAGES UZA",5121,"HK1003-Rev.0E-3",WBS,"56409",,,,,NotStart,,,,,,,,,,,,,,,,,,,"HK1003 -Blackpoint D2 - Rev.0E DD30092021;PR;6000 BUILDING / STRUCTURES;6450 SUPPLEMENTARY STRUCTURE / YARD"
1.12.4.1.2,56410,"6450.05 GATE HOUSE UYE",5121,"HK1003-Rev.0E-3",WBS,"56409",,,,100,Complete,,,,,,,,,0,,0,,0,,0,,,,"HK1003 -Blackpoint D2 - Rev.0E DD30092021;PR;6000 BUILDING / STRUCTURES;6450 SUPPLEMENTARY STRUCTURE / YARD"
1.12.4.1.2.1,56413,"6450.05.15 MASONRY WORKS GATE HOUSE UYE",5121,"HK1003-Rev.0E-3",WBS,"56410",,,,,NotStart,,,,,,,,,,,,,,,,,,,"HK1003 -Blackpoint D2 - Rev.0E DD30092021;PR;6000 BUILDING / STRUCTURES;6450 SUPPLEMENTARY STRUCTURE / YARD;6450.05 GATE HOUSE UYE"
1.12.4.1.2.2,56412,"6450.05.10 FINISHING WORKS GATE HOUSE UYE",5121,"HK1003-Rev.0E-3",WBS,"56410",,,,,NotStart,,,,,,,,,,,,,,,,,,,"HK1003 -Blackpoint D2 - Rev.0E DD30092021;PR;6000 BUILDING / STRUCTURES;6450 SUPPLEMENTARY STRUCTURE / YARD;6450.05 GATE HOUSE UYE"
1.12.4.1.2.3,56411,"6450.05.05 FOUNDATION GATE HOUSE UYE",5121,"HK1003-Rev.0E-3",WBS,"56410",,,,,NotStart,,,,,,,,,,,,,,,,,,,"HK1003 -Blackpoint D2 - Rev.0E DD30092021;PR;6000 BUILDING / STRUCTURES;6450 SUPPLEMENTARY STRUCTURE / YARD;6450.05 GATE HOUSE UYE"
1.12.4.2,56405,"6410 BRIDGE / DUCTING STRUCTURE UMY",5121,"HK1003-Rev.0E-3",WBS,"56272",,,,100,Complete,,,,,,,,,0,,0,,0,,0,,,,"HK1003 -Blackpoint D2 - Rev.0E DD30092021;PR;6000 BUILDING / STRUCTURES"
1.12.4.2.1,56406,"6410.05 PIPE / CABLE BRIDGE STRUCTURE UMY",5121,"HK1003-Rev.0E-3",WBS,"56405",,,,100,Complete,,,,,,,,,0,,0,,0,,0,,,,"HK1003 -Blackpoint D2 - Rev.0E DD30092021;PR;6000 BUILDING / STRUCTURES;6410 BRIDGE / DUCTING STRUCTURE UMY"
1.12.4.2.1.1,56408,"6410.05.10 STEELWORK BRIDGE UMY",5121,"HK1003-Rev.0E-3",WBS,"56406",,,,,NotStart,,,,,,,,,,,,,,,,,,,"HK1003 -Blackpoint D2 - Rev.0E DD30092021;PR;6000 BUILDING / STRUCTURES;6410 BRIDGE / DUCTING STRUCTURE UMY;6410.05 PIPE / CABLE BRIDGE STRUCTURE UMY"
1.12.4.2.1.2,56407,"6410.05.05 FOUNDATION BRIDGE UMY",5121,"HK1003-Rev.0E-3",WBS,"56406",,,,,NotStart,,,,,,,,,,,,,,,,,,,"HK1003 -Blackpoint D2 - Rev.0E DD30092021;PR;6000 BUILDING / STRUCTURES;6410 BRIDGE / DUCTING STRUCTURE UMY;6410.05 PIPE / CABLE BRIDGE STRUCTURE UMY"
1.12.4.3,56402,"6390 STRUCTURES FOR AUXILIARY SYSTEMS UT-",5121,"HK1003-Rev.0E-3",WBS,"56272",,,,100,Complete,,,,,,,,,0,,0,,0,,0,,,,"HK1003 -Blackpoint D2 - Rev.0E DD30092021;PR;6000 BUILDING / STRUCTURES"
1.12.4.3.1,56404,"6390.10 FENCING/FINISHING WORKS FOR IGNITION GAS TANK UTX",5121,"HK1003-Rev.0E-3",WBS,"56402",,,,,NotStart,,,,,,,,,,,,,,,,,,,"HK1003 -Blackpoint D2 - Rev.0E DD30092021;PR;6000 BUILDING / STRUCTURES;6390 STRUCTURES FOR AUXILIARY SYSTEMS UT-"
1.12.4.3.2,56403,"6390.05 STRUCTURE FOR IGNITION GAS TANK UTX",5121,"HK1003-Rev.0E-3",WBS,"56402",,,,,NotStart,,,,,,,,,,,,,,,,,,,"HK1003 -Blackpoint D2 - Rev.0E DD30092021;PR;6000 BUILDING / STRUCTURES;6390 STRUCTURES FOR AUXILIARY SYSTEMS UT-"
1.12.4.4,56398,"6380 STRUCTURES FOR SUPPORTING SYSTEMS US-",5121,"HK1003-Rev.0E-3",WBS,"56272",,,,100,Complete,,,,,,,,,0,,0,,0,,0,,,,"HK1003 -Blackpoint D2 - Rev.0E DD30092021;PR;6000 BUILDING / STRUCTURES"
1.12.4.4.1,56401,"6380.15 LABORATORY BUILDING USV",5121,"HK1003-Rev.0E-3",WBS,"56398",,,,,NotStart,,,,,,,,,,,,,,,,,,,"HK1003 -Blackpoint D2 - Rev.0E DD30092021;PR;6000 BUILDING / STRUCTURES;6380 STRUCTURES FOR SUPPORTING SYSTEMS US-"
1.12.4.4.2,56400,"6380.10 STRUCTURE FOR FIRE FIGHTING PUMP USG",5121,"HK1003-Rev.0E-3",WBS,"56398",,,,,NotStart,,,,,,,,,,,,,,,,,,,"HK1003 -Blackpoint D2 - Rev.0E DD30092021;PR;6000 BUILDING / STRUCTURES;6380 STRUCTURES FOR SUPPORTING SYSTEMS US-"
1.12.4.4.3,56399,"6380.05 STRUCTURES FOR HVAC SYSTEMS USA",5121,"HK1003-Rev.0E-3",WBS,"56398",,,,,NotStart,,,,,,,,,,,,,,,,,,,"HK1003 -Blackpoint D2 - Rev.0E DD30092021;PR;6000 BUILDING / STRUCTURES;6380 STRUCTURES FOR SUPPORTING SYSTEMS US-"
1.12.4.5,56388,"6350 STRUCTURES FOR COOLING WATER SYSTEMS UR-",5121,"HK1003-Rev.0E-3",WBS,"56272",,,,100,Complete,,,,,,,,,0,,0,,0,,0,,,,"HK1003 -Blackpoint D2 - Rev.0E DD30092021;PR;6000 BUILDING / STRUCTURES"
1.12.4.5.1,56397,"6350.25 CIRCULATING WATER PIPING UNDERGROUND PAB",5121,"HK1003-Rev.0E-3",WBS,"56388",,,,,NotStart,,,,,,,,,,,,,,,,,,,"HK1003 -Blackpoint D2 - Rev.0E DD30092021;PR;6000 BUILDING / STRUCTURES;6350 STRUCTURES FOR COOLING WATER SYSTEMS UR-"
1.12.4.5.2,56394,"6350.20 COOLING TOWER PUMP BUILDING URD",5121,"HK1003-Rev.0E-3",WBS,"56388",,,,100,Complete,,,,,,,,,0,,0,,0,,0,,,,"HK1003 -Blackpoint D2 - Rev.0E DD30092021;PR;6000 BUILDING / STRUCTURES;6350 STRUCTURES FOR COOLING WATER SYSTEMS UR-"
1.12.4.5.2.1,56396,"6350.20.10 STEEL STRUCTURE FOR COOLING TOWER PUMP BUILDING URD",5121,"HK1003-Rev.0E-3",WBS,"56394",,,,,NotStart,,,,,,,,,,,,,,,,,,,"HK1003 -Blackpoint D2 - Rev.0E DD30092021;PR;6000 BUILDING / STRUCTURES;6350 STRUCTURES FOR COOLING WATER SYSTEMS UR-;6350.20 COOLING TOWER PUMP BUILDING URD"
1.12.4.5.2.2,56395,"6350.20.05 CONCRETE STRUCTURE FOR COOLING TOWER PUMP BUILDING URD",5121,"HK1003-Rev.0E-3",WBS,"56394",,,,,NotStart,,,,,,,,,,,,,,,,,,,"HK1003 -Blackpoint D2 - Rev.0E DD30092021;PR;6000 BUILDING / STRUCTURES;6350 STRUCTURES FOR COOLING WATER SYSTEMS UR-;6350.20 COOLING TOWER PUMP BUILDING URD"
1.12.4.5.3,56393,"6350.15 COOLING TOWER RETURN CULVERT URL",5121,"HK1003-Rev.0E-3",WBS,"56388",,,,,NotStart,,,,,,,,,,,,,,,,,,,"HK1003 -Blackpoint D2 - Rev.0E DD30092021;PR;6000 BUILDING / STRUCTURES;6350 STRUCTURES FOR COOLING WATER SYSTEMS UR-"
1.12.4.5.4,56390,"6350.10 COOLING TOWER URA",5121,"HK1003-Rev.0E-3",WBS,"56388",,,,100,Complete,,,,,,,,,0,,0,,0,,0,,,,"HK1003 -Blackpoint D2 - Rev.0E DD30092021;PR;6000 BUILDING / STRUCTURES;6350 STRUCTURES FOR COOLING WATER SYSTEMS UR-"
1.12.4.5.4.1,56392,"6350.10.10 STEEL STRUCTURE FOR COOLING TOWER URA",5121,"HK1003-Rev.0E-3",WBS,"56390",,,,,NotStart,,,,,,,,,,,,,,,,,,,"HK1003 -Blackpoint D2 - Rev.0E DD30092021;PR;6000 BUILDING / STRUCTURES;6350 STRUCTURES FOR COOLING WATER SYSTEMS UR-;6350.10 COOLING TOWER URA"
1.12.4.5.4.2,56391,"6350.10.05 CONCRETE STRUCTURE FOR COOLING TOWER URA",5121,"HK1003-Rev.0E-3",WBS,"56390",,,,,NotStart,,,,,,,,,,,,,,,,,,,"HK1003 -Blackpoint D2 - Rev.0E DD30092021;PR;6000 BUILDING / STRUCTURES;6350 STRUCTURES FOR COOLING WATER SYSTEMS UR-;6350.10 COOLING TOWER URA"
1.12.4.5.5,56389,"6350.05 OVERALL BASIC DESIGN COOLING TOWER AREA",5121,"HK1003-Rev.0E-3",WBS,"56388",,,,,NotStart,,,,,,,,,,,,,,,,,,,"HK1003 -Blackpoint D2 - Rev.0E DD30092021;PR;6000 BUILDING / STRUCTURES;6350 STRUCTURES FOR COOLING WATER SYSTEMS UR-"
1.12.4.6,56373,"6290 STRUCTURES FOR MAIN MACHINE SETS UM-",5121,"HK1003-Rev.0E-3",WBS,"56272",,,,100,Complete,,,,,,,,,0,,0,,0,,0,,,,"HK1003 -Blackpoint D2 - Rev.0E DD30092021;PR;6000 BUILDING / STRUCTURES"
1.12.4.6.1,56383,"6290.15 STRUCTURE FOR EXHAUST GAS DIFFUSER UMX",5121,"HK1003-Rev.0E-3",WBS,"56373",,,,100,Complete,,,,,,,,,0,,0,,0,,0,,,,"HK1003 -Blackpoint D2 - Rev.0E DD30092021;PR;6000 BUILDING / STRUCTURES;6290 STRUCTURES FOR MAIN MACHINE SETS UM-"
1.12.4.6.1.1,56387,"6290.15.15 MASONRY/FINISHING WORKS FOR EXHAUST GAS DIFFUSER UMX",5121,"HK1003-Rev.0E-3",WBS,"56383",,,,,NotStart,,,,,,,,,,,,,,,,,,,"HK1003 -Blackpoint D2 - Rev.0E DD30092021;PR;6000 BUILDING / STRUCTURES;6290 STRUCTURES FOR MAIN MACHINE SETS UM-;6290.15 STRUCTURE FOR EXHAUST GAS DIFFUSER UMX"
1.12.4.6.1.2,56386,"6290.15.15 CLADDING FOR EXHAUST GAS DIFFUSER UMX",5121,"HK1003-Rev.0E-3",WBS,"56383",,,,,NotStart,,,,,,,,,,,,,,,,,,,"HK1003 -Blackpoint D2 - Rev.0E DD30092021;PR;6000 BUILDING / STRUCTURES;6290 STRUCTURES FOR MAIN MACHINE SETS UM-;6290.15 STRUCTURE FOR EXHAUST GAS DIFFUSER UMX"
1.12.4.6.1.3,56385,"6290.15.10 STEELWORK FOR EXHAUST GAS DIFFUSER UMX",5121,"HK1003-Rev.0E-3",WBS,"56383",,,,,NotStart,,,,,,,,,,,,,,,,,,,"HK1003 -Blackpoint D2 - Rev.0E DD30092021;PR;6000 BUILDING / STRUCTURES;6290 STRUCTURES FOR MAIN MACHINE SETS UM-;6290.15 STRUCTURE FOR EXHAUST GAS DIFFUSER UMX"
1.12.4.6.1.4,56384,"6290.15.05 FOUNDATION FOR EXHAUST GAS DIFFUSER UMX",5121,"HK1003-Rev.0E-3",WBS,"56383",,,,,NotStart,,,,,,,,,,,,,,,,,,,"HK1003 -Blackpoint D2 - Rev.0E DD30092021;PR;6000 BUILDING / STRUCTURES;6290 STRUCTURES FOR MAIN MACHINE SETS UM-;6290.15 STRUCTURE FOR EXHAUST GAS DIFFUSER UMX"
1.12.4.6.2,56375,"6290.10 GAS TURBINE BUILDING UMB",5121,"HK1003-Rev.0E-3",WBS,"56373",,,,100,Complete,,,,,,,,,0,,0,,0,,0,,,,"HK1003 -Blackpoint D2 - Rev.0E DD30092021;PR;6000 BUILDING / STRUCTURES;6290 STRUCTURES FOR MAIN MACHINE SETS UM-"
1.12.4.6.2.1,56382,"6290.10.35 MASONRY/CLADDING/FINISHING WORKS UMC",5121,"HK1003-Rev.0E-3",WBS,"56375",,,,,NotStart,,,,,,,,,,,,,,,,,,,"HK1003 -Blackpoint D2 - Rev.0E DD30092021;PR;6000 BUILDING / STRUCTURES;6290 STRUCTURES FOR MAIN MACHINE SETS UM-;6290.10 GAS TURBINE BUILDING UMB"
1.12.4.6.2.2,56381,"6290.10.30 STEEL PLATFORMS UMC",5121,"HK1003-Rev.0E-3",WBS,"56375",,,,,NotStart,,,,,,,,,,,,,,,,,,,"HK1003 -Blackpoint D2 - Rev.0E DD30092021;PR;6000 BUILDING / STRUCTURES;6290 STRUCTURES FOR MAIN MACHINE SETS UM-;6290.10 GAS TURBINE BUILDING UMB"
1.12.4.6.2.3,56380,"6290.10.25 MAIN STEELWORK UMC",5121,"HK1003-Rev.0E-3",WBS,"56375",,,,,NotStart,,,,,,,,,,,,,,,,,,,"HK1003 -Blackpoint D2 - Rev.0E DD30092021;PR;6000 BUILDING / STRUCTURES;6290 STRUCTURES FOR MAIN MACHINE SETS UM-;6290.10 GAS TURBINE BUILDING UMB"
1.12.4.6.2.4,56379,"6290.10.20 BUILDING FOUNDATION UMC",5121,"HK1003-Rev.0E-3",WBS,"56375",,,,,NotStart,,,,,,,,,,,,,,,,,,,"HK1003 -Blackpoint D2 - Rev.0E DD30092021;PR;6000 BUILDING / STRUCTURES;6290 STRUCTURES FOR MAIN MACHINE SETS UM-;6290.10 GAS TURBINE BUILDING UMB"
1.12.4.6.2.5,56378,"6290.10.15 CONDENSATE PIT UMC",5121,"HK1003-Rev.0E-3",WBS,"56375",,,,,NotStart,,,,,,,,,,,,,,,,,,,"HK1003 -Blackpoint D2 - Rev.0E DD30092021;PR;6000 BUILDING / STRUCTURES;6290 STRUCTURES FOR MAIN MACHINE SETS UM-;6290.10 GAS TURBINE BUILDING UMB"
1.12.4.6.2.6,56377,"6290.10.10 TURBOSET FOUNDATION UMB",5121,"HK1003-Rev.0E-3",WBS,"56375",,,,,NotStart,,,,,,,,,,,,,,,,,,,"HK1003 -Blackpoint D2 - Rev.0E DD30092021;PR;6000 BUILDING / STRUCTURES;6290 STRUCTURES FOR MAIN MACHINE SETS UM-;6290.10 GAS TURBINE BUILDING UMB"
1.12.4.6.2.7,56376,"6290.10.05 TEMPORARY WORKS CONDENSATE PIT UMC",5121,"HK1003-Rev.0E-3",WBS,"56375",,,,,NotStart,,,,,,,,,,,,,,,,,,,"HK1003 -Blackpoint D2 - Rev.0E DD30092021;PR;6000 BUILDING / STRUCTURES;6290 STRUCTURES FOR MAIN MACHINE SETS UM-;6290.10 GAS TURBINE BUILDING UMB"
1.12.4.6.3,56374,"6290.05 OVERALL BASIC DESIGN GAS / STEAM TURBINE AREA",5121,"HK1003-Rev.0E-3",WBS,"56373",,,,,NotStart,,,,,,,,,,,,,,,,,,,"HK1003 -Blackpoint D2 - Rev.0E DD30092021;PR;6000 BUILDING / STRUCTURES;6290 STRUCTURES FOR MAIN MACHINE SETS UM-"
1.12.4.7,56365,"6270 STRUCTURES FOR STEAM, WATER / GAS SYSTEMS UL-",5121,"HK1003-Rev.0E-3",WBS,"56272",,,,100,Complete,,,,,,,,,0,,0,,0,,0,,,,"HK1003 -Blackpoint D2 - Rev.0E DD30092021;PR;6000 BUILDING / STRUCTURES"
1.12.4.7.1,56369,"6270.10 STRUCTURE FOR CONDENSATE POLISHING PLANT ULD",5121,"HK1003-Rev.0E-3",WBS,"56365",,,,100,Complete,,,,,,,,,0,,0,,0,,0,,,,"HK1003 -Blackpoint D2 - Rev.0E DD30092021;PR;6000 BUILDING / STRUCTURES;6270 STRUCTURES FOR STEAM, WATER / GAS SYSTEMS UL-"
1.12.4.7.1.1,56372,"6270.10.15 CLADDING CONDENSATE POLISHING PLANT ULD",5121,"HK1003-Rev.0E-3",WBS,"56369",,,,,NotStart,,,,,,,,,,,,,,,,,,,"HK1003 -Blackpoint D2 - Rev.0E DD30092021;PR;6000 BUILDING / STRUCTURES;6270 STRUCTURES FOR STEAM, WATER / GAS SYSTEMS UL-;6270.10 STRUCTURE FOR CONDENSATE POLISHING PLANT ULD"
1.12.4.7.1.2,56371,"6270.10.10 STEELWORK CONDENSATE POLISHING PLANT ULD",5121,"HK1003-Rev.0E-3",WBS,"56369",,,,,NotStart,,,,,,,,,,,,,,,,,,,"HK1003 -Blackpoint D2 - Rev.0E DD30092021;PR;6000 BUILDING / STRUCTURES;6270 STRUCTURES FOR STEAM, WATER / GAS SYSTEMS UL-;6270.10 STRUCTURE FOR CONDENSATE POLISHING PLANT ULD"
1.12.4.7.1.3,56370,"6270.10.05 FOUNDATION CONDENSATE POLISHING PLANT ULD",5121,"HK1003-Rev.0E-3",WBS,"56369",,,,,NotStart,,,,,,,,,,,,,,,,,,,"HK1003 -Blackpoint D2 - Rev.0E DD30092021;PR;6000 BUILDING / STRUCTURES;6270 STRUCTURES FOR STEAM, WATER / GAS SYSTEMS UL-;6270.10 STRUCTURE FOR CONDENSATE POLISHING PLANT ULD"
1.12.4.7.2,56366,"6270.05 FEEDWATER PUMP STRUCTURE ULA",5121,"HK1003-Rev.0E-3",WBS,"56365",,,,100,Complete,,,,,,,,,0,,0,,0,,0,,,,"HK1003 -Blackpoint D2 - Rev.0E DD30092021;PR;6000 BUILDING / STRUCTURES;6270 STRUCTURES FOR STEAM, WATER / GAS SYSTEMS UL-"
1.12.4.7.2.1,56368,"6270.05.10 STEELWORK FEEDWATER PUMP HOUSE ULA",5121,"HK1003-Rev.0E-3",WBS,"56366",,,,,NotStart,,,,,,,,,,,,,,,,,,,"HK1003 -Blackpoint D2 - Rev.0E DD30092021;PR;6000 BUILDING / STRUCTURES;6270 STRUCTURES FOR STEAM, WATER / GAS SYSTEMS UL-;6270.05 FEEDWATER PUMP STRUCTURE ULA"
1.12.4.7.2.2,56367,"6270.05.05 FOUNDATION FEEDWATER PUMP HOUSE ULA",5121,"HK1003-Rev.0E-3",WBS,"56366",,,,,NotStart,,,,,,,,,,,,,,,,,,,"HK1003 -Blackpoint D2 - Rev.0E DD30092021;PR;6000 BUILDING / STRUCTURES;6270 STRUCTURES FOR STEAM, WATER / GAS SYSTEMS UL-;6270.05 FEEDWATER PUMP STRUCTURE ULA"
1.12.4.8,56357,"6220 STRUCTURES FOR FOSSIL-FIRED HEAT GENERATION UHA/UHB/UHW",5121,"HK1003-Rev.0E-3",WBS,"56272",,,,100,Complete,,,,,,,,,0,,0,,0,,0,,,,"HK1003 -Blackpoint D2 - Rev.0E DD30092021;PR;6000 BUILDING / STRUCTURES"
1.12.4.8.1,56361,"6220.20 BOILER BLOWDOWN STRUCTURE UHW",5121,"HK1003-Rev.0E-3",WBS,"56357",,,,100,Complete,,,,,,,,,0,,0,,0,,0,,,,"HK1003 -Blackpoint D2 - Rev.0E DD30092021;PR;6000 BUILDING / STRUCTURES;6220 STRUCTURES FOR FOSSIL-FIRED HEAT GENERATION UHA/UHB/UHW"
1.12.4.8.1.1,56364,"6220.20.15 STEELWORK BOILER BLOWDOWN STRUCTURE UHW",5121,"HK1003-Rev.0E-3",WBS,"56361",,,,,NotStart,,,,,,,,,,,,,,,,,,,"HK1003 -Blackpoint D2 - Rev.0E DD30092021;PR;6000 BUILDING / STRUCTURES;6220 STRUCTURES FOR FOSSIL-FIRED HEAT GENERATION UHA/UHB/UHW;6220.20 BOILER BLOWDOWN STRUCTURE UHW"
1.12.4.8.1.2,56363,"6220.20.10 FOUNDATION BOILER BLOWDOWN STRUCTURE UHW",5121,"HK1003-Rev.0E-3",WBS,"56361",,,,,NotStart,,,,,,,,,,,,,,,,,,,"HK1003 -Blackpoint D2 - Rev.0E DD30092021;PR;6000 BUILDING / STRUCTURES;6220 STRUCTURES FOR FOSSIL-FIRED HEAT GENERATION UHA/UHB/UHW;6220.20 BOILER BLOWDOWN STRUCTURE UHW"
1.12.4.8.1.3,56362,"6220.20.05 TEMPORARY WORKS BOILER BLOWDOWN STRUCTURE UHW",5121,"HK1003-Rev.0E-3",WBS,"56361",,,,,NotStart,,,,,,,,,,,,,,,,,,,"HK1003 -Blackpoint D2 - Rev.0E DD30092021;PR;6000 BUILDING / STRUCTURES;6220 STRUCTURES FOR FOSSIL-FIRED HEAT GENERATION UHA/UHB/UHW;6220.20 BOILER BLOWDOWN STRUCTURE UHW"
1.12.4.8.2,56360,"6220.15 FOUNDATION AUXILIARY BOILER UHB",5121,"HK1003-Rev.0E-3",WBS,"56357",,,,,NotStart,,,,,,,,,,,,,,,,,,,"HK1003 -Blackpoint D2 - Rev.0E DD30092021;PR;6000 BUILDING / STRUCTURES;6220 STRUCTURES FOR FOSSIL-FIRED HEAT GENERATION UHA/UHB/UHW"
1.12.4.8.3,56359,"6220.10 BUILDING FOUNDATION HRSG UHA",5121,"HK1003-Rev.0E-3",WBS,"56357",,,,,NotStart,,,,,,,,,,,,,,,,,,,"HK1003 -Blackpoint D2 - Rev.0E DD30092021;PR;6000 BUILDING / STRUCTURES;6220 STRUCTURES FOR FOSSIL-FIRED HEAT GENERATION UHA/UHB/UHW"
1.12.4.8.4,56358,"6220.05 OVERALL BASIC DESIGN BOILER AREA",5121,"HK1003-Rev.0E-3",WBS,"56357",,,,,NotStart,,,,,,,,,,,,,,,,,,,"HK1003 -Blackpoint D2 - Rev.0E DD30092021;PR;6000 BUILDING / STRUCTURES;6220 STRUCTURES FOR FOSSIL-FIRED HEAT GENERATION UHA/UHB/UHW"
1.12.4.9,56337,"6190 STRUCTURES FOR WATER SUPPLY / DISPOSAL",5121,"HK1003-Rev.0E-3",WBS,"56272",,,,100,Complete,,,,,,,,,0,,0,,0,,0,,,,"HK1003 -Blackpoint D2 - Rev.0E DD30092021;PR;6000 BUILDING / STRUCTURES"
1.12.4.9.1,56356,"6190.35 RETENTION POND PIT UGX",5121,"HK1003-Rev.0E-3",WBS,"56337",,,,,NotStart,,,,,,,,,,,,,,,,,,,"HK1003 -Blackpoint D2 - Rev.0E DD30092021;PR;6000 BUILDING / STRUCTURES;6190 STRUCTURES FOR WATER SUPPLY / DISPOSAL"
1.12.4.9.2,56352,"6190.30 STRUCTURE FOR EFFLUENT DISPOSAL/TREATMENT UGU/UGV",5121,"HK1003-Rev.0E-3",WBS,"56337",,,,100,Complete,,,,,,,,,0,,0,,0,,0,,,,"HK1003 -Blackpoint D2 - Rev.0E DD30092021;PR;6000 BUILDING / STRUCTURES;6190 STRUCTURES FOR WATER SUPPLY / DISPOSAL"
1.12.4.9.2.1,56355,"6190.30.15 SEWAGE WATER TREATMENT PLANT UGV",5121,"HK1003-Rev.0E-3",WBS,"56352",,,,,NotStart,,,,,,,,,,,,,,,,,,,"HK1003 -Blackpoint D2 - Rev.0E DD30092021;PR;6000 BUILDING / STRUCTURES;6190 STRUCTURES FOR WATER SUPPLY / DISPOSAL;6190.30 STRUCTURE FOR EFFLUENT DISPOSAL/TREATMENT UGU/UGV"
1.12.4.9.2.2,56354,"6190.30.10 STRUCTURE FOR SEWAGE WATER PIT UGV",5121,"HK1003-Rev.0E-3",WBS,"56352",,,,,NotStart,,,,,,,,,,,,,,,,,,,"HK1003 -Blackpoint D2 - Rev.0E DD30092021;PR;6000 BUILDING / STRUCTURES;6190 STRUCTURES FOR WATER SUPPLY / DISPOSAL;6190.30 STRUCTURE FOR EFFLUENT DISPOSAL/TREATMENT UGU/UGV"
1.12.4.9.2.3,56353,"6190.30.05 STRUCTURE FOR SEWAGE WATER PUMP STATION UGU",5121,"HK1003-Rev.0E-3",WBS,"56352",,,,,NotStart,,,,,,,,,,,,,,,,,,,"HK1003 -Blackpoint D2 - Rev.0E DD30092021;PR;6000 BUILDING / STRUCTURES;6190 STRUCTURES FOR WATER SUPPLY / DISPOSAL;6190.30 STRUCTURE FOR EFFLUENT DISPOSAL/TREATMENT UGU/UGV"
1.12.4.9.3,56347,"6190.25 STRUCTURE FOR COOLING TOWER MAKEUP WATER UGJ",5121,"HK1003-Rev.0E-3",WBS,"56337",,,,100,Complete,,,,,,,,,0,,0,,0,,0,,,,"HK1003 -Blackpoint D2 - Rev.0E DD30092021;PR;6000 BUILDING / STRUCTURES;6190 STRUCTURES FOR WATER SUPPLY / DISPOSAL"
1.12.4.9.3.1,56351,"6190.25.20 MASONRY/FINISH.W. FOR COOLING TOWER MAKEUP WATER UGJ",5121,"HK1003-Rev.0E-3",WBS,"56347",,,,,NotStart,,,,,,,,,,,,,,,,,,,"HK1003 -Blackpoint D2 - Rev.0E DD30092021;PR;6000 BUILDING / STRUCTURES;6190 STRUCTURES FOR WATER SUPPLY / DISPOSAL;6190.25 STRUCTURE FOR COOLING TOWER MAKEUP WATER UGJ"
1.12.4.9.3.2,56350,"6190.25.15 CLADDING FOR COOLING TOWER MAKEUP WATER UGJ",5121,"HK1003-Rev.0E-3",WBS,"56347",,,,,NotStart,,,,,,,,,,,,,,,,,,,"HK1003 -Blackpoint D2 - Rev.0E DD30092021;PR;6000 BUILDING / STRUCTURES;6190 STRUCTURES FOR WATER SUPPLY / DISPOSAL;6190.25 STRUCTURE FOR COOLING TOWER MAKEUP WATER UGJ"
1.12.4.9.3.3,56349,"6190.25.10 STEEL STRUCTURE FOR COOLING TOWER MAKEUP WATER UGJ",5121,"HK1003-Rev.0E-3",WBS,"56347",,,,,NotStart,,,,,,,,,,,,,,,,,,,"HK1003 -Blackpoint D2 - Rev.0E DD30092021;PR;6000 BUILDING / STRUCTURES;6190 STRUCTURES FOR WATER SUPPLY / DISPOSAL;6190.25 STRUCTURE FOR COOLING TOWER MAKEUP WATER UGJ"
1.12.4.9.3.4,56348,"6190.25.05 FOUNDATION FOR COOLING TOWER MAKEUP WATER UGJ",5121,"HK1003-Rev.0E-3",WBS,"56347",,,,,NotStart,,,,,,,,,,,,,,,,,,,"HK1003 -Blackpoint D2 - Rev.0E DD30092021;PR;6000 BUILDING / STRUCTURES;6190 STRUCTURES FOR WATER SUPPLY / DISPOSAL;6190.25 STRUCTURE FOR COOLING TOWER MAKEUP WATER UGJ"
1.12.4.9.4,56341,"6190.20 STRUCTURE FOR DEMINERALIZATION SYSTEM UGD",5121,"HK1003-Rev.0E-3",WBS,"56337",,,,100,Complete,,,,,,,,,0,,0,,0,,0,,,,"HK1003 -Blackpoint D2 - Rev.0E DD30092021;PR;6000 BUILDING / STRUCTURES;6190 STRUCTURES FOR WATER SUPPLY / DISPOSAL"
1.12.4.9.4.1,56346,"6190.20.25 MASONRY WORKS WATER TREATMENT BUILDING UGD",5121,"HK1003-Rev.0E-3",WBS,"56341",,,,,NotStart,,,,,,,,,,,,,,,,,,,"HK1003 -Blackpoint D2 - Rev.0E DD30092021;PR;6000 BUILDING / STRUCTURES;6190 STRUCTURES FOR WATER SUPPLY / DISPOSAL;6190.20 STRUCTURE FOR DEMINERALIZATION SYSTEM UGD"
1.12.4.9.4.2,56345,"6190.20.20 FINISHING WORKS WATER TREATMENT BUILDING UGD",5121,"HK1003-Rev.0E-3",WBS,"56341",,,,,NotStart,,,,,,,,,,,,,,,,,,,"HK1003 -Blackpoint D2 - Rev.0E DD30092021;PR;6000 BUILDING / STRUCTURES;6190 STRUCTURES FOR WATER SUPPLY / DISPOSAL;6190.20 STRUCTURE FOR DEMINERALIZATION SYSTEM UGD"
1.12.4.9.4.3,56344,"6190.20.15 CLADDING WATER TREATMENT BUILDING UGD",5121,"HK1003-Rev.0E-3",WBS,"56341",,,,,NotStart,,,,,,,,,,,,,,,,,,,"HK1003 -Blackpoint D2 - Rev.0E DD30092021;PR;6000 BUILDING / STRUCTURES;6190 STRUCTURES FOR WATER SUPPLY / DISPOSAL;6190.20 STRUCTURE FOR DEMINERALIZATION SYSTEM UGD"
1.12.4.9.4.4,56343,"6190.20.10 STEEL STRUCTURE WATER TREATMENT BUILDING UGD",5121,"HK1003-Rev.0E-3",WBS,"56341",,,,,NotStart,,,,,,,,,,,,,,,,,,,"HK1003 -Blackpoint D2 - Rev.0E DD30092021;PR;6000 BUILDING / STRUCTURES;6190 STRUCTURES FOR WATER SUPPLY / DISPOSAL;6190.20 STRUCTURE FOR DEMINERALIZATION SYSTEM UGD"
1.12.4.9.4.5,56342,"6190.20.05 FOUNDATION FOR WATER TREATMENT BUILDING UGD",5121,"HK1003-Rev.0E-3",WBS,"56341",,,,,NotStart,,,,,,,,,,,,,,,,,,,"HK1003 -Blackpoint D2 - Rev.0E DD30092021;PR;6000 BUILDING / STRUCTURES;6190 STRUCTURES FOR WATER SUPPLY / DISPOSAL;6190.20 STRUCTURE FOR DEMINERALIZATION SYSTEM UGD"
1.12.4.9.5,56340,"6190.15 STRUCTURE FOR DEMINERALIZED WATER SUPPLY UGC",5121,"HK1003-Rev.0E-3",WBS,"56337",,,,,NotStart,,,,,,,,,,,,,,,,,,,"HK1003 -Blackpoint D2 - Rev.0E DD30092021;PR;6000 BUILDING / STRUCTURES;6190 STRUCTURES FOR WATER SUPPLY / DISPOSAL"
1.12.4.9.6,56339,"6190.10 STRUCTURE FOR RAW WATER TANK UGA",5121,"HK1003-Rev.0E-3",WBS,"56337",,,,,NotStart,,,,,,,,,,,,,,,,,,,"HK1003 -Blackpoint D2 - Rev.0E DD30092021;PR;6000 BUILDING / STRUCTURES;6190 STRUCTURES FOR WATER SUPPLY / DISPOSAL"
1.12.4.9.7,56338,"6190.05 OVERALL BASIC DESIGN WATER TREATMENT AREA",5121,"HK1003-Rev.0E-3",WBS,"56337",,,,,NotStart,,,,,,,,,,,,,,,,,,,"HK1003 -Blackpoint D2 - Rev.0E DD30092021;PR;6000 BUILDING / STRUCTURES;6190 STRUCTURES FOR WATER SUPPLY / DISPOSAL"
1.12.4.10,56315,"6140 STRUCTURES FOR FUEL SUPPLY, TREATMENT / DISPOSAL UE-",5121,"HK1003-Rev.0E-3",WBS,"56272",,,,100,Complete,,,,,,,,,0,,0,,0,,0,,,,"HK1003 -Blackpoint D2 - Rev.0E DD30092021;PR;6000 BUILDING / STRUCTURES"
1.12.4.10.1,56334,"6140.30 STRUCTURE FOR FUEL TRANSFER / CABLES UGY",5121,"HK1003-Rev.0E-3",WBS,"56315",,,,100,Complete,,,,,,,,,0,,0,,0,,0,,,,"HK1003 -Blackpoint D2 - Rev.0E DD30092021;PR;6000 BUILDING / STRUCTURES;6140 STRUCTURES FOR FUEL SUPPLY, TREATMENT / DISPOSAL UE-"
1.12.4.10.1.1,56336,"6140.30.10 STEELWORK SLEEPERWAYS UGY",5121,"HK1003-Rev.0E-3",WBS,"56334",,,,,NotStart,,,,,,,,,,,,,,,,,,,"HK1003 -Blackpoint D2 - Rev.0E DD30092021;PR;6000 BUILDING / STRUCTURES;6140 STRUCTURES FOR FUEL SUPPLY, TREATMENT / DISPOSAL UE-;6140.30 STRUCTURE FOR FUEL TRANSFER / CABLES UGY"
1.12.4.10.1.2,56335,"6140.30.05 FOUNDATION SLEEPERWAYS UGY",5121,"HK1003-Rev.0E-3",WBS,"56334",,,,,NotStart,,,,,,,,,,,,,,,,,,,"HK1003 -Blackpoint D2 - Rev.0E DD30092021;PR;6000 BUILDING / STRUCTURES;6140 STRUCTURES FOR FUEL SUPPLY, TREATMENT / DISPOSAL UE-;6140.30 STRUCTURE FOR FUEL TRANSFER / CABLES UGY"
1.12.4.10.2,56331,"6140.25 STRUCTURE FOR FUEL TRANSFER UEY",5121,"HK1003-Rev.0E-3",WBS,"56315",,,,100,Complete,,,,,,,,,0,,0,,0,,0,,,,"HK1003 -Blackpoint D2 - Rev.0E DD30092021;PR;6000 BUILDING / STRUCTURES;6140 STRUCTURES FOR FUEL SUPPLY, TREATMENT / DISPOSAL UE-"
1.12.4.10.2.1,56333,"6140.25.10 STEELWORK PIPE BRIDGE UEY",5121,"HK1003-Rev.0E-3",WBS,"56331",,,,,NotStart,,,,,,,,,,,,,,,,,,,"HK1003 -Blackpoint D2 - Rev.0E DD30092021;PR;6000 BUILDING / STRUCTURES;6140 STRUCTURES FOR FUEL SUPPLY, TREATMENT / DISPOSAL UE-;6140.25 STRUCTURE FOR FUEL TRANSFER UEY"
1.12.4.10.2.2,56332,"6140.25.05 FOUNDATION PIPE BRIDGE UEY",5121,"HK1003-Rev.0E-3",WBS,"56331",,,,,NotStart,,,,,,,,,,,,,,,,,,,"HK1003 -Blackpoint D2 - Rev.0E DD30092021;PR;6000 BUILDING / STRUCTURES;6140 STRUCTURES FOR FUEL SUPPLY, TREATMENT / DISPOSAL UE-;6140.25 STRUCTURE FOR FUEL TRANSFER UEY"
1.12.4.10.3,56323,"6140.20 STRUCTURES FOR FUEL OIL SUPPLY UEJ/UEL/UEH",5121,"HK1003-Rev.0E-3",WBS,"56315",,,,100,Complete,,,,,,,,,0,,0,,0,,0,,,,"HK1003 -Blackpoint D2 - Rev.0E DD30092021;PR;6000 BUILDING / STRUCTURES;6140 STRUCTURES FOR FUEL SUPPLY, TREATMENT / DISPOSAL UE-"
1.12.4.10.3.1,56330,"6140.20.35 CLADDING FOR FUEL OIL UNLOADING UEH",5121,"HK1003-Rev.0E-3",WBS,"56323",,,,,NotStart,,,,,,,,,,,,,,,,,,,"HK1003 -Blackpoint D2 - Rev.0E DD30092021;PR;6000 BUILDING / STRUCTURES;6140 STRUCTURES FOR FUEL SUPPLY, TREATMENT / DISPOSAL UE-;6140.20 STRUCTURES FOR FUEL OIL SUPPLY UEJ/UEL/UEH"
1.12.4.10.3.2,56329,"6140.20.30 STEEL STRUCTURE FOR FUEL OIL UNLOADING UEH",5121,"HK1003-Rev.0E-3",WBS,"56323",,,,,NotStart,,,,,,,,,,,,,,,,,,,"HK1003 -Blackpoint D2 - Rev.0E DD30092021;PR;6000 BUILDING / STRUCTURES;6140 STRUCTURES FOR FUEL SUPPLY, TREATMENT / DISPOSAL UE-;6140.20 STRUCTURES FOR FUEL OIL SUPPLY UEJ/UEL/UEH"
1.12.4.10.3.3,56328,"6140.20.25 FOUNDATION FOR FUEL OIL UNLOADING UEH",5121,"HK1003-Rev.0E-3",WBS,"56323",,,,,NotStart,,,,,,,,,,,,,,,,,,,"HK1003 -Blackpoint D2 - Rev.0E DD30092021;PR;6000 BUILDING / STRUCTURES;6140 STRUCTURES FOR FUEL SUPPLY, TREATMENT / DISPOSAL UE-;6140.20 STRUCTURES FOR FUEL OIL SUPPLY UEJ/UEL/UEH"
1.12.4.10.3.4,56327,"6140.20.20 CLADDING FOR FUEL OIL FORWARDING UEL",5121,"HK1003-Rev.0E-3",WBS,"56323",,,,,NotStart,,,,,,,,,,,,,,,,,,,"HK1003 -Blackpoint D2 - Rev.0E DD30092021;PR;6000 BUILDING / STRUCTURES;6140 STRUCTURES FOR FUEL SUPPLY, TREATMENT / DISPOSAL UE-;6140.20 STRUCTURES FOR FUEL OIL SUPPLY UEJ/UEL/UEH"
1.12.4.10.3.5,56326,"6140.20.15 STEEL STRUCTURE FOR FUEL OIL FORWARDING UEL",5121,"HK1003-Rev.0E-3",WBS,"56323",,,,,NotStart,,,,,,,,,,,,,,,,,,,"HK1003 -Blackpoint D2 - Rev.0E DD30092021;PR;6000 BUILDING / STRUCTURES;6140 STRUCTURES FOR FUEL SUPPLY, TREATMENT / DISPOSAL UE-;6140.20 STRUCTURES FOR FUEL OIL SUPPLY UEJ/UEL/UEH"
1.12.4.10.3.6,56325,"6140.20.10 FOUNDATION FOR FUEL OIL FORWARDING UEL",5121,"HK1003-Rev.0E-3",WBS,"56323",,,,,NotStart,,,,,,,,,,,,,,,,,,,"HK1003 -Blackpoint D2 - Rev.0E DD30092021;PR;6000 BUILDING / STRUCTURES;6140 STRUCTURES FOR FUEL SUPPLY, TREATMENT / DISPOSAL UE-;6140.20 STRUCTURES FOR FUEL OIL SUPPLY UEJ/UEL/UEH"
1.12.4.10.3.7,56324,"6140.20.05 FOUNDATION FOR FUEL OIL STORAGE UEJ",5121,"HK1003-Rev.0E-3",WBS,"56323",,,,,NotStart,,,,,,,,,,,,,,,,,,,"HK1003 -Blackpoint D2 - Rev.0E DD30092021;PR;6000 BUILDING / STRUCTURES;6140 STRUCTURES FOR FUEL SUPPLY, TREATMENT / DISPOSAL UE-;6140.20 STRUCTURES FOR FUEL OIL SUPPLY UEJ/UEL/UEH"
1.12.4.10.4,56322,"6140.15 OVERALL BASIC DESIGN FUEL OIL AREA",5121,"HK1003-Rev.0E-3",WBS,"56315",,,,,NotStart,,,,,,,,,,,,,,,,,,,"HK1003 -Blackpoint D2 - Rev.0E DD30092021;PR;6000 BUILDING / STRUCTURES;6140 STRUCTURES FOR FUEL SUPPLY, TREATMENT / DISPOSAL UE-"
1.12.4.10.5,56317,"6140.10 STRUCTURES FOR FUEL GAS SUPPLY UEN",5121,"HK1003-Rev.0E-3",WBS,"56315",,,,100,Complete,,,,,,,,,0,,0,,0,,0,,,,"HK1003 -Blackpoint D2 - Rev.0E DD30092021;PR;6000 BUILDING / STRUCTURES;6140 STRUCTURES FOR FUEL SUPPLY, TREATMENT / DISPOSAL UE-"
1.12.4.10.5.1,56321,"6140.10.20 FENCING/FINISHING WORKS FUEL GAS FINAL FILTER/METERING 10UEN",5121,"HK1003-Rev.0E-3",WBS,"56317",,,,,NotStart,,,,,,,,,,,,,,,,,,,"HK1003 -Blackpoint D2 - Rev.0E DD30092021;PR;6000 BUILDING / STRUCTURES;6140 STRUCTURES FOR FUEL SUPPLY, TREATMENT / DISPOSAL UE-;6140.10 STRUCTURES FOR FUEL GAS SUPPLY UEN"
1.12.4.10.5.2,56320,"6140.10.15 FOUNDATION FOR FUEL GAS FINAL FILTER/METERING 10UEN",5121,"HK1003-Rev.0E-3",WBS,"56317",,,,,NotStart,,,,,,,,,,,,,,,,,,,"HK1003 -Blackpoint D2 - Rev.0E DD30092021;PR;6000 BUILDING / STRUCTURES;6140 STRUCTURES FOR FUEL SUPPLY, TREATMENT / DISPOSAL UE-;6140.10 STRUCTURES FOR FUEL GAS SUPPLY UEN"
1.12.4.10.5.3,56319,"6140.10.10 FENCING/FINISHING WORKS FUEL GAS REDUCING STATION 00UEN",5121,"HK1003-Rev.0E-3",WBS,"56317",,,,,NotStart,,,,,,,,,,,,,,,,,,,"HK1003 -Blackpoint D2 - Rev.0E DD30092021;PR;6000 BUILDING / STRUCTURES;6140 STRUCTURES FOR FUEL SUPPLY, TREATMENT / DISPOSAL UE-;6140.10 STRUCTURES FOR FUEL GAS SUPPLY UEN"
1.12.4.10.5.4,56318,"6140.10.05 STRUCTURE FOR FUEL GAS REDUCING STATION 00UEN",5121,"HK1003-Rev.0E-3",WBS,"56317",,,,,NotStart,,,,,,,,,,,,,,,,,,,"HK1003 -Blackpoint D2 - Rev.0E DD30092021;PR;6000 BUILDING / STRUCTURES;6140 STRUCTURES FOR FUEL SUPPLY, TREATMENT / DISPOSAL UE-;6140.10 STRUCTURES FOR FUEL GAS SUPPLY UEN"
1.12.4.10.6,56316,"6140.05 OVERALL BASIC DESIGN FUEL GAS AREA",5121,"HK1003-Rev.0E-3",WBS,"56315",,,,,NotStart,,,,,,,,,,,,,,,,,,,"HK1003 -Blackpoint D2 - Rev.0E DD30092021;PR;6000 BUILDING / STRUCTURES;6140 STRUCTURES FOR FUEL SUPPLY, TREATMENT / DISPOSAL UE-"
1.12.4.11,56306,"6130 STRUCTURES FOR INSTRUMENTATION / CONTROL UCA (UYC/UST)",5121,"HK1003-Rev.0E-3",WBS,"56272",,,,100,Complete,,,,,,,,,0,,0,,0,,0,,,,"HK1003 -Blackpoint D2 - Rev.0E DD30092021;PR;6000 BUILDING / STRUCTURES"
1.12.4.11.1,56314,"6130.40 MASONRY WORKS UST",5121,"HK1003-Rev.0E-3",WBS,"56306",,,,,NotStart,,,,,,,,,,,,,,,,,,,"HK1003 -Blackpoint D2 - Rev.0E DD30092021;PR;6000 BUILDING / STRUCTURES;6130 STRUCTURES FOR INSTRUMENTATION / CONTROL UCA (UYC/UST)"
1.12.4.11.2,56313,"6130.35 FINISHING WORKS UST",5121,"HK1003-Rev.0E-3",WBS,"56306",,,,,NotStart,,,,,,,,,,,,,,,,,,,"HK1003 -Blackpoint D2 - Rev.0E DD30092021;PR;6000 BUILDING / STRUCTURES;6130 STRUCTURES FOR INSTRUMENTATION / CONTROL UCA (UYC/UST)"
1.12.4.11.3,56312,"6130.30 STEELWORK UST",5121,"HK1003-Rev.0E-3",WBS,"56306",,,,,NotStart,,,,,,,,,,,,,,,,,,,"HK1003 -Blackpoint D2 - Rev.0E DD30092021;PR;6000 BUILDING / STRUCTURES;6130 STRUCTURES FOR INSTRUMENTATION / CONTROL UCA (UYC/UST)"
1.12.4.11.4,56311,"6130.25 FOUNDATION UST",5121,"HK1003-Rev.0E-3",WBS,"56306",,,,,NotStart,,,,,,,,,,,,,,,,,,,"HK1003 -Blackpoint D2 - Rev.0E DD30092021;PR;6000 BUILDING / STRUCTURES;6130 STRUCTURES FOR INSTRUMENTATION / CONTROL UCA (UYC/UST)"
1.12.4.11.5,56310,"6130.20 MASONRY WORKS UCA/UYC",5121,"HK1003-Rev.0E-3",WBS,"56306",,,,,NotStart,,,,,,,,,,,,,,,,,,,"HK1003 -Blackpoint D2 - Rev.0E DD30092021;PR;6000 BUILDING / STRUCTURES;6130 STRUCTURES FOR INSTRUMENTATION / CONTROL UCA (UYC/UST)"
1.12.4.11.6,56309,"6130.15 FINISHING WORKS UCA/UYC",5121,"HK1003-Rev.0E-3",WBS,"56306",,,,,NotStart,,,,,,,,,,,,,,,,,,,"HK1003 -Blackpoint D2 - Rev.0E DD30092021;PR;6000 BUILDING / STRUCTURES;6130 STRUCTURES FOR INSTRUMENTATION / CONTROL UCA (UYC/UST)"
1.12.4.11.7,56308,"6130.10 FOUNDATION UCA/UYC",5121,"HK1003-Rev.0E-3",WBS,"56306",,,,,NotStart,,,,,,,,,,,,,,,,,,,"HK1003 -Blackpoint D2 - Rev.0E DD30092021;PR;6000 BUILDING / STRUCTURES;6130 STRUCTURES FOR INSTRUMENTATION / CONTROL UCA (UYC/UST)"
1.12.4.11.8,56307,"6130.05 OVERALL BASIC DESIGN UCA/UYC/UST AREA",5121,"HK1003-Rev.0E-3",WBS,"56306",,,,,NotStart,,,,,,,,,,,,,,,,,,,"HK1003 -Blackpoint D2 - Rev.0E DD30092021;PR;6000 BUILDING / STRUCTURES;6130 STRUCTURES FOR INSTRUMENTATION / CONTROL UCA (UYC/UST)"
1.12.4.12,56285,"6110 STRUCTURES FOR POWER SUBMISSION / AUX. POWER SUPPLY UB-",5121,"HK1003-Rev.0E-3",WBS,"56272",,,,100,Complete,,,,,,,,,0,,0,,0,,0,,,,"HK1003 -Blackpoint D2 - Rev.0E DD30092021;PR;6000 BUILDING / STRUCTURES"
1.12.4.12.1,56305,"6110.40 CABLE PULLING PIT STRUCTURE UBS",5121,"HK1003-Rev.0E-3",WBS,"56285",,,,,NotStart,,,,,,,,,,,,,,,,,,,"HK1003 -Blackpoint D2 - Rev.0E DD30092021;PR;6000 BUILDING / STRUCTURES;6110 STRUCTURES FOR POWER SUBMISSION / AUX. POWER SUPPLY UB-"
1.12.4.12.2,56304,"6110.35 DUCTING STRUCTURE UBZ",5121,"HK1003-Rev.0E-3",WBS,"56285",,,,,NotStart,,,,,,,,,,,,,,,,,,,"HK1003 -Blackpoint D2 - Rev.0E DD30092021;PR;6000 BUILDING / STRUCTURES;6110 STRUCTURES FOR POWER SUBMISSION / AUX. POWER SUPPLY UB-"
1.12.4.12.3,56301,"6110.30 STRUCTURE FOR OIL COLLECTING PIT / SEPARATOR UBH",5121,"HK1003-Rev.0E-3",WBS,"56285",,,,100,Complete,,,,,,,,,0,,0,,0,,0,,,,"HK1003 -Blackpoint D2 - Rev.0E DD30092021;PR;6000 BUILDING / STRUCTURES;6110 STRUCTURES FOR POWER SUBMISSION / AUX. POWER SUPPLY UB-"
1.12.4.12.3.1,56303,"6110.30.10 OIL COLLECTING PIT / SEPARATOR UBH02",5121,"HK1003-Rev.0E-3",WBS,"56301",,,,,NotStart,,,,,,,,,,,,,,,,,,,"HK1003 -Blackpoint D2 - Rev.0E DD30092021;PR;6000 BUILDING / STRUCTURES;6110 STRUCTURES FOR POWER SUBMISSION / AUX. POWER SUPPLY UB-;6110.30 STRUCTURE FOR OIL COLLECTING PIT / SEPARATOR UBH"
1.12.4.12.3.2,56302,"6110.30.05 OIL COLLECTING PIT / SEPARATOR UBH01",5121,"HK1003-Rev.0E-3",WBS,"56301",,,,,NotStart,,,,,,,,,,,,,,,,,,,"HK1003 -Blackpoint D2 - Rev.0E DD30092021;PR;6000 BUILDING / STRUCTURES;6110 STRUCTURES FOR POWER SUBMISSION / AUX. POWER SUPPLY UB-;6110.30 STRUCTURE FOR OIL COLLECTING PIT / SEPARATOR UBH"
1.12.4.12.4,56300,"6110.25 STRUCTURE FOR EMERGENCY DIESEL GENERATOR SET UBN",5121,"HK1003-Rev.0E-3",WBS,"56285",,,,,NotStart,,,,,,,,,,,,,,,,,,,"HK1003 -Blackpoint D2 - Rev.0E DD30092021;PR;6000 BUILDING / STRUCTURES;6110 STRUCTURES FOR POWER SUBMISSION / AUX. POWER SUPPLY UB-"
1.12.4.12.5,56299,"6110.20 FOUNDATION HV-GANTRY UBL",5121,"HK1003-Rev.0E-3",WBS,"56285",,,,,NotStart,,,,,,,,,,,,,,,,,,,"HK1003 -Blackpoint D2 - Rev.0E DD30092021;PR;6000 BUILDING / STRUCTURES;6110 STRUCTURES FOR POWER SUBMISSION / AUX. POWER SUPPLY UB-"
1.12.4.12.6,56295,"6110.15 STRUCTURE FOR GENERATOR CIRCUIT BREAKER UBX",5121,"HK1003-Rev.0E-3",WBS,"56285",,,,100,Complete,,,,,,,,,0,,0,,0,,0,,,,"HK1003 -Blackpoint D2 - Rev.0E DD30092021;PR;6000 BUILDING / STRUCTURES;6110 STRUCTURES FOR POWER SUBMISSION / AUX. POWER SUPPLY UB-"
1.12.4.12.6.1,56298,"6110.15.15 CLADDING FOR GENERATOR CIRCUIT BREAKER UBX",5121,"HK1003-Rev.0E-3",WBS,"56295",,,,,NotStart,,,,,,,,,,,,,,,,,,,"HK1003 -Blackpoint D2 - Rev.0E DD30092021;PR;6000 BUILDING / STRUCTURES;6110 STRUCTURES FOR POWER SUBMISSION / AUX. POWER SUPPLY UB-;6110.15 STRUCTURE FOR GENERATOR CIRCUIT BREAKER UBX"
1.12.4.12.6.2,56297,"6110.15.10 STEEL STRUCTURE FOR GENERATOR CIRCUIT BREAKER UBX",5121,"HK1003-Rev.0E-3",WBS,"56295",,,,,NotStart,,,,,,,,,,,,,,,,,,,"HK1003 -Blackpoint D2 - Rev.0E DD30092021;PR;6000 BUILDING / STRUCTURES;6110 STRUCTURES FOR POWER SUBMISSION / AUX. POWER SUPPLY UB-;6110.15 STRUCTURE FOR GENERATOR CIRCUIT BREAKER UBX"
1.12.4.12.6.3,56296,"6110.15.05 FOUNDATION FOR GENERATOR CIRCUIT BREAKER UBX",5121,"HK1003-Rev.0E-3",WBS,"56295",,,,,NotStart,,,,,,,,,,,,,,,,,,,"HK1003 -Blackpoint D2 - Rev.0E DD30092021;PR;6000 BUILDING / STRUCTURES;6110 STRUCTURES FOR POWER SUBMISSION / AUX. POWER SUPPLY UB-;6110.15 STRUCTURE FOR GENERATOR CIRCUIT BREAKER UBX"
1.12.4.12.7,56291,"6110.10 STRUCTURE FOR GENERATOR/AUXILIARY TRANSFORMER UBE/UBF",5121,"HK1003-Rev.0E-3",WBS,"56285",,,,100,Complete,,,,,,,,,0,,0,,0,,0,,,,"HK1003 -Blackpoint D2 - Rev.0E DD30092021;PR;6000 BUILDING / STRUCTURES;6110 STRUCTURES FOR POWER SUBMISSION / AUX. POWER SUPPLY UB-"
1.12.4.12.7.1,56294,"6110.10.15 FENCING/FINISHING WORKS TRANSFORMER UBF/UBE",5121,"HK1003-Rev.0E-3",WBS,"56291",,,,,NotStart,,,,,,,,,,,,,,,,,,,"HK1003 -Blackpoint D2 - Rev.0E DD30092021;PR;6000 BUILDING / STRUCTURES;6110 STRUCTURES FOR POWER SUBMISSION / AUX. POWER SUPPLY UB-;6110.10 STRUCTURE FOR GENERATOR/AUXILIARY TRANSFORMER UBE/UBF"
1.12.4.12.7.2,56293,"6110.10.10 STEELWORK TRANSFORMER UBF/UBE",5121,"HK1003-Rev.0E-3",WBS,"56291",,,,,NotStart,,,,,,,,,,,,,,,,,,,"HK1003 -Blackpoint D2 - Rev.0E DD30092021;PR;6000 BUILDING / STRUCTURES;6110 STRUCTURES FOR POWER SUBMISSION / AUX. POWER SUPPLY UB-;6110.10 STRUCTURE FOR GENERATOR/AUXILIARY TRANSFORMER UBE/UBF"
1.12.4.12.7.3,56292,"6110.10.05 FOUNDATION TRANSFORMER UBF/UBE",5121,"HK1003-Rev.0E-3",WBS,"56291",,,,,NotStart,,,,,,,,,,,,,,,,,,,"HK1003 -Blackpoint D2 - Rev.0E DD30092021;PR;6000 BUILDING / STRUCTURES;6110 STRUCTURES FOR POWER SUBMISSION / AUX. POWER SUPPLY UB-;6110.10 STRUCTURE FOR GENERATOR/AUXILIARY TRANSFORMER UBE/UBF"
1.12.4.12.8,56286,"6110.05 POWER CONTROL CENTERS (PCC) UBA",5121,"HK1003-Rev.0E-3",WBS,"56285",,,,100,Complete,,,,,,,,,0,,0,,0,,0,,,,"HK1003 -Blackpoint D2 - Rev.0E DD30092021;PR;6000 BUILDING / STRUCTURES;6110 STRUCTURES FOR POWER SUBMISSION / AUX. POWER SUPPLY UB-"
1.12.4.12.8.1,56290,"6110.05.20 STEEL PLATFORMS UBA81",5121,"HK1003-Rev.0E-3",WBS,"56286",,,,,NotStart,,,,,,,,,,,,,,,,,,,"HK1003 -Blackpoint D2 - Rev.0E DD30092021;PR;6000 BUILDING / STRUCTURES;6110 STRUCTURES FOR POWER SUBMISSION / AUX. POWER SUPPLY UB-;6110.05 POWER CONTROL CENTERS (PCC) UBA"
1.12.4.12.8.2,56289,"6110.05.15 FOUNDATION PCC UBA81",5121,"HK1003-Rev.0E-3",WBS,"56286",,,,,NotStart,,,,,,,,,,,,,,,,,,,"HK1003 -Blackpoint D2 - Rev.0E DD30092021;PR;6000 BUILDING / STRUCTURES;6110 STRUCTURES FOR POWER SUBMISSION / AUX. POWER SUPPLY UB-;6110.05 POWER CONTROL CENTERS (PCC) UBA"
1.12.4.12.8.3,56288,"6110.05.10 STEEL PLATFORMS PCC UBA61,63,65/66",5121,"HK1003-Rev.0E-3",WBS,"56286",,,,,NotStart,,,,,,,,,,,,,,,,,,,"HK1003 -Blackpoint D2 - Rev.0E DD30092021;PR;6000 BUILDING / STRUCTURES;6110 STRUCTURES FOR POWER SUBMISSION / AUX. POWER SUPPLY UB-;6110.05 POWER CONTROL CENTERS (PCC) UBA"
1.12.4.12.8.4,56287,"6110.05.05 FOUNDATION PCC UBA61,63,65/66 / UBD",5121,"HK1003-Rev.0E-3",WBS,"56286",,,,,NotStart,,,,,,,,,,,,,,,,,,,"HK1003 -Blackpoint D2 - Rev.0E DD30092021;PR;6000 BUILDING / STRUCTURES;6110 STRUCTURES FOR POWER SUBMISSION / AUX. POWER SUPPLY UB-;6110.05 POWER CONTROL CENTERS (PCC) UBA"
1.12.4.13,56280,"6101 GRID / DISTRIBUTION SYSTEM UA-",5121,"HK1003-Rev.0E-3",WBS,"56272",,,,100,Complete,,,,,,,,,0,,0,,0,,0,,,,"HK1003 -Blackpoint D2 - Rev.0E DD30092021;PR;6000 BUILDING / STRUCTURES"
1.12.4.13.1,56282,"6101.10 STRUCTURES FOR GRID / DISTRIBUTION SYSTEM UA-",5121,"HK1003-Rev.0E-3",WBS,"56280",,,,100,Complete,,,,,,,,,0,,0,,0,,0,,,,"HK1003 -Blackpoint D2 - Rev.0E DD30092021;PR;6000 BUILDING / STRUCTURES;6101 GRID / DISTRIBUTION SYSTEM UA-"
1.12.4.13.1.1,56284,"6101.10.10 FENCING/FINISH.W. FOR GRID / DISTRIBUTION SYSTEMS UAA",5121,"HK1003-Rev.0E-3",WBS,"56282",,,,,NotStart,,,,,,,,,,,,,,,,,,,"HK1003 -Blackpoint D2 - Rev.0E DD30092021;PR;6000 BUILDING / STRUCTURES;6101 GRID / DISTRIBUTION SYSTEM UA-;6101.10 STRUCTURES FOR GRID / DISTRIBUTION SYSTEM UA-"
1.12.4.13.1.2,56283,"6101.10.05 FOUNDATION FOR GRID / DISTRIBUTION SYSTEMS UAA",5121,"HK1003-Rev.0E-3",WBS,"56282",,,,,NotStart,,,,,,,,,,,,,,,,,,,"HK1003 -Blackpoint D2 - Rev.0E DD30092021;PR;6000 BUILDING / STRUCTURES;6101 GRID / DISTRIBUTION SYSTEM UA-;6101.10 STRUCTURES FOR GRID / DISTRIBUTION SYSTEM UA-"
1.12.4.13.2,56281,"6101.05 OVERALL BASIC DESIGN SWITCHYARD AERA",5121,"HK1003-Rev.0E-3",WBS,"56280",,,,,NotStart,,,,,,,,,,,,,,,,,,,"HK1003 -Blackpoint D2 - Rev.0E DD30092021;PR;6000 BUILDING / STRUCTURES;6101 GRID / DISTRIBUTION SYSTEM UA-"
1.12.4.14,56273,"6000 GENERAL CIVIL ACTIVITIES",5121,"HK1003-Rev.0E-3",WBS,"56272",,,,100,Complete,,,,,,,,,0,,0,,0,,0,,,,"HK1003 -Blackpoint D2 - Rev.0E DD30092021;PR;6000 BUILDING / STRUCTURES"
1.12.4.14.1,56277,"6000.20 PILING",5121,"HK1003-Rev.0E-3",WBS,"56273",,,,100,Complete,,,,,,,,,0,,0,,0,,0,,,,"HK1003 -Blackpoint D2 - Rev.0E DD30092021;PR;6000 BUILDING / STRUCTURES;6000 GENERAL CIVIL ACTIVITIES"
1.12.4.14.1.1,56279,"6000.20.10 PILING DESIGN / PILING",5121,"HK1003-Rev.0E-3",WBS,"56277",,,,,NotStart,,,,,,,,,,,,,,,,,,,"HK1003 -Blackpoint D2 - Rev.0E DD30092021;PR;6000 BUILDING / STRUCTURES;6000 GENERAL CIVIL ACTIVITIES;6000.20 PILING"
1.12.4.14.1.2,56278,"6000.20.05 TEST PILING",5121,"HK1003-Rev.0E-3",WBS,"56277",,,,,NotStart,,,,,,,,,,,,,,,,,,,"HK1003 -Blackpoint D2 - Rev.0E DD30092021;PR;6000 BUILDING / STRUCTURES;6000 GENERAL CIVIL ACTIVITIES;6000.20 PILING"
1.12.4.14.2,56276,"6000.15 SOIL INVESTIGATION",5121,"HK1003-Rev.0E-3",WBS,"56273",,,,,NotStart,,,,,,,,,,,,,,,,,,,"HK1003 -Blackpoint D2 - Rev.0E DD30092021;PR;6000 BUILDING / STRUCTURES;6000 GENERAL CIVIL ACTIVITIES"
1.12.4.14.3,56275,"6000.10 TOPOGRAPHICAL SURVEY",5121,"HK1003-Rev.0E-3",WBS,"56273",,,,,NotStart,,,,,,,,,,,,,,,,,,,"HK1003 -Blackpoint D2 - Rev.0E DD30092021;PR;6000 BUILDING / STRUCTURES;6000 GENERAL CIVIL ACTIVITIES"
1.12.4.14.4,56274,"6000.05 OVERALL BASIC DESIGN",5121,"HK1003-Rev.0E-3",WBS,"56273",,,,,NotStart,,,,,,,,,,,,,,,,,,,"HK1003 -Blackpoint D2 - Rev.0E DD30092021;PR;6000 BUILDING / STRUCTURES;6000 GENERAL CIVIL ACTIVITIES"
1.12.5,56247,"5000 HVAC, FIRE PROTECTION / CRANES",5121,"HK1003-Rev.0E-3",WBS,"55934",,,,100,Complete,,,,,,,,,0,,0,,0,,0,,,,"HK1003 -Blackpoint D2 - Rev.0E DD30092021;PR"
1.12.5.1,56268,"5721 LIFTING EQUIPMENT / ELEVATORS SM-",5121,"HK1003-Rev.0E-3",WBS,"56247",,,,100,Complete,,,,,,,,,0,,0,,0,,0,,,,"HK1003 -Blackpoint D2 - Rev.0E DD30092021;PR;5000 HVAC, FIRE PROTECTION / CRANES"
1.12.5.1.1,56271,"5721.15 CRANE IN UST SMS",5121,"HK1003-Rev.0E-3",WBS,"56268",,,,,NotStart,,,,,,,,,,,,,,,,,,,"HK1003 -Blackpoint D2 - Rev.0E DD30092021;PR;5000 HVAC, FIRE PROTECTION / CRANES;5721 LIFTING EQUIPMENT / ELEVATORS SM-"
1.12.5.1.2,56270,"5721.10 JIB CRANE TURBINE BUILDING SMM",5121,"HK1003-Rev.0E-3",WBS,"56268",,,,,NotStart,,,,,,,,,,,,,,,,,,,"HK1003 -Blackpoint D2 - Rev.0E DD30092021;PR;5000 HVAC, FIRE PROTECTION / CRANES;5721 LIFTING EQUIPMENT / ELEVATORS SM-"
1.12.5.1.3,56269,"5721.05.05 CRANE IN UMC SMM",5121,"HK1003-Rev.0E-3",WBS,"56268",,,,,NotStart,,,,,,,,,,,,,,,,,,,"HK1003 -Blackpoint D2 - Rev.0E DD30092021;PR;5000 HVAC, FIRE PROTECTION / CRANES;5721 LIFTING EQUIPMENT / ELEVATORS SM-"
1.12.5.2,56261,"5631 HVAC SYSTEMS SA-",5121,"HK1003-Rev.0E-3",WBS,"56247",,,,100,Complete,,,,,,,,,0,,0,,0,,0,,,,"HK1003 -Blackpoint D2 - Rev.0E DD30092021;PR;5000 HVAC, FIRE PROTECTION / CRANES"
1.12.5.2.1,56267,"5631.30 HVAC SYSTEM IN UGJ SA-",5121,"HK1003-Rev.0E-3",WBS,"56261",,,,,NotStart,,,,,,,,,,,,,,,,,,,"HK1003 -Blackpoint D2 - Rev.0E DD30092021;PR;5000 HVAC, FIRE PROTECTION / CRANES;5631 HVAC SYSTEMS SA-"
1.12.5.2.2,56266,"5631.25 HVAC SYSTEM IN UYE SA-",5121,"HK1003-Rev.0E-3",WBS,"56261",,,,,NotStart,,,,,,,,,,,,,,,,,,,"HK1003 -Blackpoint D2 - Rev.0E DD30092021;PR;5000 HVAC, FIRE PROTECTION / CRANES;5631 HVAC SYSTEMS SA-"
1.12.5.2.3,56265,"5631.20 HVAC SYSTEM IN UGD SA-",5121,"HK1003-Rev.0E-3",WBS,"56261",,,,,NotStart,,,,,,,,,,,,,,,,,,,"HK1003 -Blackpoint D2 - Rev.0E DD30092021;PR;5000 HVAC, FIRE PROTECTION / CRANES;5631 HVAC SYSTEMS SA-"
1.12.5.2.4,56264,"5631.15 HVAC SYSTEM IN UST SAS",5121,"HK1003-Rev.0E-3",WBS,"56261",,,,,NotStart,,,,,,,,,,,,,,,,,,,"HK1003 -Blackpoint D2 - Rev.0E DD30092021;PR;5000 HVAC, FIRE PROTECTION / CRANES;5631 HVAC SYSTEMS SA-"
1.12.5.2.5,56263,"5631.10 HVAC SYSTEM IN UCA (UYC) SAC",5121,"HK1003-Rev.0E-3",WBS,"56261",,,,,NotStart,,,,,,,,,,,,,,,,,,,"HK1003 -Blackpoint D2 - Rev.0E DD30092021;PR;5000 HVAC, FIRE PROTECTION / CRANES;5631 HVAC SYSTEMS SA-"
1.12.5.2.6,56262,"5631.05 HVAC SYSTEM IN UMC SAM",5121,"HK1003-Rev.0E-3",WBS,"56261",,,,,NotStart,,,,,,,,,,,,,,,,,,,"HK1003 -Blackpoint D2 - Rev.0E DD30092021;PR;5000 HVAC, FIRE PROTECTION / CRANES;5631 HVAC SYSTEMS SA-"
1.12.5.3,56248,"5511 FIRE FIGHTING EQUIPMENT SG-",5121,"HK1003-Rev.0E-3",WBS,"56247",,,,100,Complete,,,,,,,,,0,,0,,0,,0,,,,"HK1003 -Blackpoint D2 - Rev.0E DD30092021;PR;5000 HVAC, FIRE PROTECTION / CRANES"
1.12.5.3.1,56260,"5511.35 FIRE DETECTION SYSTEM SGY",5121,"HK1003-Rev.0E-3",WBS,"56248",,,,,NotStart,,,,,,,,,,,,,,,,,,,"HK1003 -Blackpoint D2 - Rev.0E DD30092021;PR;5000 HVAC, FIRE PROTECTION / CRANES;5511 FIRE FIGHTING EQUIPMENT SG-"
1.12.5.3.2,56259,"5511.30 FIRE FIGHTING EXTINGUISHERS SGM",5121,"HK1003-Rev.0E-3",WBS,"56248",,,,,NotStart,,,,,,,,,,,,,,,,,,,"HK1003 -Blackpoint D2 - Rev.0E DD30092021;PR;5000 HVAC, FIRE PROTECTION / CRANES;5511 FIRE FIGHTING EQUIPMENT SG-"
1.12.5.3.3,56258,"5511.25 FIRE FIGHTING CO2 SYSTEM FOR PCC UBA61/81 SGJ",5121,"HK1003-Rev.0E-3",WBS,"56248",,,,,NotStart,,,,,,,,,,,,,,,,,,,"HK1003 -Blackpoint D2 - Rev.0E DD30092021;PR;5000 HVAC, FIRE PROTECTION / CRANES;5511 FIRE FIGHTING EQUIPMENT SG-"
1.12.5.3.4,56257,"5511.20 FIRE FIGHTING FOAM SYSTEM SGF",5121,"HK1003-Rev.0E-3",WBS,"56248",,,,,NotStart,,,,,,,,,,,,,,,,,,,"HK1003 -Blackpoint D2 - Rev.0E DD30092021;PR;5000 HVAC, FIRE PROTECTION / CRANES;5511 FIRE FIGHTING EQUIPMENT SG-"
1.12.5.3.5,56256,"5511.15 FIRE FIGHTING SPRINKLER SYSTEM SGE",5121,"HK1003-Rev.0E-3",WBS,"56248",,,,,NotStart,,,,,,,,,,,,,,,,,,,"HK1003 -Blackpoint D2 - Rev.0E DD30092021;PR;5000 HVAC, FIRE PROTECTION / CRANES;5511 FIRE FIGHTING EQUIPMENT SG-"
1.12.5.3.6,56254,"5511.10 FIRE FIGHTING SPRAY DELUGE SYSTEM SGC",5121,"HK1003-Rev.0E-3",WBS,"56248",,,,100,Complete,,,,,,,,,0,,0,,0,,0,,,,"HK1003 -Blackpoint D2 - Rev.0E DD30092021;PR;5000 HVAC, FIRE PROTECTION / CRANES;5511 FIRE FIGHTING EQUIPMENT SG-"
1.12.5.3.6.1,56255,"5511.10.05 FIRE FIGHTING SPRAY DELUGE SYSTEM FOR 11/12BAT/BBT SGC",5121,"HK1003-Rev.0E-3",WBS,"56254",,,,,NotStart,,,,,,,,,,,,,,,,,,,"HK1003 -Blackpoint D2 - Rev.0E DD30092021;PR;5000 HVAC, FIRE PROTECTION / CRANES;5511 FIRE FIGHTING EQUIPMENT SG-;5511.10 FIRE FIGHTING SPRAY DELUGE SYSTEM SGC"
1.12.5.3.7,56249,"5511.05 FIRE FIGHTING WATER SYSTEMS SGA",5121,"HK1003-Rev.0E-3",WBS,"56248",,,,100,Complete,,,,,,,,,0,,0,,0,,0,,,,"HK1003 -Blackpoint D2 - Rev.0E DD30092021;PR;5000 HVAC, FIRE PROTECTION / CRANES;5511 FIRE FIGHTING EQUIPMENT SG-"
1.12.5.3.7.1,56253,"5511.05.20 FIRE FIGHTING WATER RING MAIN (YARD) SGA",5121,"HK1003-Rev.0E-3",WBS,"56249",,,,,NotStart,,,,,,,,,,,,,,,,,,,"HK1003 -Blackpoint D2 - Rev.0E DD30092021;PR;5000 HVAC, FIRE PROTECTION / CRANES;5511 FIRE FIGHTING EQUIPMENT SG-;5511.05 FIRE FIGHTING WATER SYSTEMS SGA"
1.12.5.3.7.2,56252,"5511.05.15 FIRE FIGHTING WATER PUMP/SYSTEM IN USG SGA",5121,"HK1003-Rev.0E-3",WBS,"56249",,,,,NotStart,,,,,,,,,,,,,,,,,,,"HK1003 -Blackpoint D2 - Rev.0E DD30092021;PR;5000 HVAC, FIRE PROTECTION / CRANES;5511 FIRE FIGHTING EQUIPMENT SG-;5511.05 FIRE FIGHTING WATER SYSTEMS SGA"
1.12.5.3.7.3,56251,"5511.05.10 FIRE FIGHTING WATER SYSTEMS IN UCA/UYC/UST SGA",5121,"HK1003-Rev.0E-3",WBS,"56249",,,,,NotStart,,,,,,,,,,,,,,,,,,,"HK1003 -Blackpoint D2 - Rev.0E DD30092021;PR;5000 HVAC, FIRE PROTECTION / CRANES;5511 FIRE FIGHTING EQUIPMENT SG-;5511.05 FIRE FIGHTING WATER SYSTEMS SGA"
1.12.5.3.7.4,56250,"5511.05.05 FIRE FIGHTING WATER SYSTEMS IN UMC SGA",5121,"HK1003-Rev.0E-3",WBS,"56249",,,,,NotStart,,,,,,,,,,,,,,,,,,,"HK1003 -Blackpoint D2 - Rev.0E DD30092021;PR;5000 HVAC, FIRE PROTECTION / CRANES;5511 FIRE FIGHTING EQUIPMENT SG-;5511.05 FIRE FIGHTING WATER SYSTEMS SGA"
1.12.6,56145,"4000 WATER STEAM CYCLE / TREATMENT / COOLING SYSTEMS",5121,"HK1003-Rev.0E-3",WBS,"55934",,,,100,Complete,,,,,,,,,0,,0,,0,,0,,,,"HK1003 -Blackpoint D2 - Rev.0E DD30092021;PR"
1.12.6.1,56246,"4961 LABORATORY EQUIPMENT STG",5121,"HK1003-Rev.0E-3",WBS,"56145",,,,,NotStart,,,,,,,,,,,,,,,,,,,"HK1003 -Blackpoint D2 - Rev.0E DD30092021;PR;4000 WATER STEAM CYCLE / TREATMENT / COOLING SYSTEMS"
1.12.6.2,56245,"4821 CONTROL VALVES",5121,"HK1003-Rev.0E-3",WBS,"56145",,,,,NotStart,,,,,,,,,,,,,,,,,,,"HK1003 -Blackpoint D2 - Rev.0E DD30092021;PR;4000 WATER STEAM CYCLE / TREATMENT / COOLING SYSTEMS"
1.12.6.3,56244,"4801 MISCELLANEOUS VALVES",5121,"HK1003-Rev.0E-3",WBS,"56145",,,,,NotStart,,,,,,,,,,,,,,,,,,,"HK1003 -Blackpoint D2 - Rev.0E DD30092021;PR;4000 WATER STEAM CYCLE / TREATMENT / COOLING SYSTEMS"
1.12.6.4,56195,"4711 PIPING",5121,"HK1003-Rev.0E-3",WBS,"56145",,,,100,Complete,,,,,,,,,0,,0,,0,,0,,,,"HK1003 -Blackpoint D2 - Rev.0E DD30092021;PR;4000 WATER STEAM CYCLE / TREATMENT / COOLING SYSTEMS"
1.12.6.4.1,56243,"4711.65 PIPING FOR AUXILIARY SYSTEMS (DOSING/SAMPLING) QC/QU",5121,"HK1003-Rev.0E-3",WBS,"56195",,,,,NotStart,,,,,,,,,,,,,,,,,,,"HK1003 -Blackpoint D2 - Rev.0E DD30092021;PR;4000 WATER STEAM CYCLE / TREATMENT / COOLING SYSTEMS;4711 PIPING"
1.12.6.4.2,56242,"4711.60 PIPING FOR CENTRAL CONTROL AIR DISTRIBUTION SYSTEM QFB",5121,"HK1003-Rev.0E-3",WBS,"56195",,,,,NotStart,,,,,,,,,,,,,,,,,,,"HK1003 -Blackpoint D2 - Rev.0E DD30092021;PR;4000 WATER STEAM CYCLE / TREATMENT / COOLING SYSTEMS;4711 PIPING"
1.12.6.4.3,56241,"4711.55 PIPING FOR COMPRESSED AIR SUPPLY SCB",5121,"HK1003-Rev.0E-3",WBS,"56195",,,,,NotStart,,,,,,,,,,,,,,,,,,,"HK1003 -Blackpoint D2 - Rev.0E DD30092021;PR;4000 WATER STEAM CYCLE / TREATMENT / COOLING SYSTEMS;4711 PIPING"
1.12.6.4.4,56235,"4711.50 PIPING FOR WATER SUPPLY AND DISPOSAL SYSTEMS G--",5121,"HK1003-Rev.0E-3",WBS,"56195",,,,100,Complete,,,,,,,,,0,,0,,0,,0,,,,"HK1003 -Blackpoint D2 - Rev.0E DD30092021;PR;4000 WATER STEAM CYCLE / TREATMENT / COOLING SYSTEMS;4711 PIPING"
1.12.6.4.4.1,56240,"4711.50.25 PIPING SERVICE WATER DISTRIBUTION SYSTEM GHD",5121,"HK1003-Rev.0E-3",WBS,"56235",,,,,NotStart,,,,,,,,,,,,,,,,,,,"HK1003 -Blackpoint D2 - Rev.0E DD30092021;PR;4000 WATER STEAM CYCLE / TREATMENT / COOLING SYSTEMS;4711 PIPING;4711.50 PIPING FOR WATER SUPPLY AND DISPOSAL SYSTEMS G--"
1.12.6.4.4.2,56239,"4711.50.20 PIPING PLANT DRAINAGE SYSTEM GM",5121,"HK1003-Rev.0E-3",WBS,"56235",,,,,NotStart,,,,,,,,,,,,,,,,,,,"HK1003 -Blackpoint D2 - Rev.0E DD30092021;PR;4000 WATER STEAM CYCLE / TREATMENT / COOLING SYSTEMS;4711 PIPING;4711.50 PIPING FOR WATER SUPPLY AND DISPOSAL SYSTEMS G--"
1.12.6.4.4.3,56238,"4711.50.15 PIPING POTABLE WATER DISTRIBUTION GKB",5121,"HK1003-Rev.0E-3",WBS,"56235",,,,,NotStart,,,,,,,,,,,,,,,,,,,"HK1003 -Blackpoint D2 - Rev.0E DD30092021;PR;4000 WATER STEAM CYCLE / TREATMENT / COOLING SYSTEMS;4711 PIPING;4711.50 PIPING FOR WATER SUPPLY AND DISPOSAL SYSTEMS G--"
1.12.6.4.4.4,56237,"4711.50.10 PIPING DEMINERALIZED WATER DISTRIBUTION GHC",5121,"HK1003-Rev.0E-3",WBS,"56235",,,,,NotStart,,,,,,,,,,,,,,,,,,,"HK1003 -Blackpoint D2 - Rev.0E DD30092021;PR;4000 WATER STEAM CYCLE / TREATMENT / COOLING SYSTEMS;4711 PIPING;4711.50 PIPING FOR WATER SUPPLY AND DISPOSAL SYSTEMS G--"
1.12.6.4.4.5,56236,"4711.50.05 PIPING RAW WATER SUPPLY GA",5121,"HK1003-Rev.0E-3",WBS,"56235",,,,,NotStart,,,,,,,,,,,,,,,,,,,"HK1003 -Blackpoint D2 - Rev.0E DD30092021;PR;4000 WATER STEAM CYCLE / TREATMENT / COOLING SYSTEMS;4711 PIPING;4711.50 PIPING FOR WATER SUPPLY AND DISPOSAL SYSTEMS G--"
1.12.6.4.5,56228,"4711.45 PIPING FOR COOLING WATER SYSTEMS P--",5121,"HK1003-Rev.0E-3",WBS,"56195",,,,100,Complete,,,,,,,,,0,,0,,0,,0,,,,"HK1003 -Blackpoint D2 - Rev.0E DD30092021;PR;4000 WATER STEAM CYCLE / TREATMENT / COOLING SYSTEMS;4711 PIPING"
1.12.6.4.5.1,56234,"4711.45.30 PIPING FOR CW BIOCIDE SYSTEM (ONLY BY SEAWATER) PUN",5121,"HK1003-Rev.0E-3",WBS,"56228",,,,,NotStart,,,,,,,,,,,,,,,,,,,"HK1003 -Blackpoint D2 - Rev.0E DD30092021;PR;4000 WATER STEAM CYCLE / TREATMENT / COOLING SYSTEMS;4711 PIPING;4711.45 PIPING FOR COOLING WATER SYSTEMS P--"
1.12.6.4.5.2,56233,"4711.45.25 PIPING FOR CIRCULATING WATER TREATMENT SYSTEM PB",5121,"HK1003-Rev.0E-3",WBS,"56228",,,,,NotStart,,,,,,,,,,,,,,,,,,,"HK1003 -Blackpoint D2 - Rev.0E DD30092021;PR;4000 WATER STEAM CYCLE / TREATMENT / COOLING SYSTEMS;4711 PIPING;4711.45 PIPING FOR COOLING WATER SYSTEMS P--"
1.12.6.4.5.3,56232,"4711.45.20 PIPING FOR CONDENSER CLEANING SYSTEM PAH",5121,"HK1003-Rev.0E-3",WBS,"56228",,,,,NotStart,,,,,,,,,,,,,,,,,,,"HK1003 -Blackpoint D2 - Rev.0E DD30092021;PR;4000 WATER STEAM CYCLE / TREATMENT / COOLING SYSTEMS;4711 PIPING;4711.45 PIPING FOR COOLING WATER SYSTEMS P--"
1.12.6.4.5.4,56231,"4711.45.15 PIPING FOR CLOSED COOLING WATER SYSTEM PGB",5121,"HK1003-Rev.0E-3",WBS,"56228",,,,,NotStart,,,,,,,,,,,,,,,,,,,"HK1003 -Blackpoint D2 - Rev.0E DD30092021;PR;4000 WATER STEAM CYCLE / TREATMENT / COOLING SYSTEMS;4711 PIPING;4711.45 PIPING FOR COOLING WATER SYSTEMS P--"
1.12.6.4.5.5,56230,"4711.45.10 PIPING FOR SERVICE WATER SYSTEM PCB",5121,"HK1003-Rev.0E-3",WBS,"56228",,,,,NotStart,,,,,,,,,,,,,,,,,,,"HK1003 -Blackpoint D2 - Rev.0E DD30092021;PR;4000 WATER STEAM CYCLE / TREATMENT / COOLING SYSTEMS;4711 PIPING;4711.45 PIPING FOR COOLING WATER SYSTEMS P--"
1.12.6.4.5.6,56229,"4711.45.05 PIPING FOR CIRCULATING WATER SYSTEM TURBINE BUILDING PAB",5121,"HK1003-Rev.0E-3",WBS,"56228",,,,,NotStart,,,,,,,,,,,,,,,,,,,"HK1003 -Blackpoint D2 - Rev.0E DD30092021;PR;4000 WATER STEAM CYCLE / TREATMENT / COOLING SYSTEMS;4711 PIPING;4711.45 PIPING FOR COOLING WATER SYSTEMS P--"
1.12.6.4.6,56216,"4711.40 PIPING FOR MAIN MACHINE SET SYSTEMS M--",5121,"HK1003-Rev.0E-3",WBS,"56195",,,,100,Complete,,,,,,,,,0,,0,,0,,0,,,,"HK1003 -Blackpoint D2 - Rev.0E DD30092021;PR;4000 WATER STEAM CYCLE / TREATMENT / COOLING SYSTEMS;4711 PIPING"
1.12.6.4.6.1,56227,"4711.40.55 PIPING GAS TURBINE ADDITIV SYSTEM MBU",5121,"HK1003-Rev.0E-3",WBS,"56216",,,,,NotStart,,,,,,,,,,,,,,,,,,,"HK1003 -Blackpoint D2 - Rev.0E DD30092021;PR;4000 WATER STEAM CYCLE / TREATMENT / COOLING SYSTEMS;4711 PIPING;4711.40 PIPING FOR MAIN MACHINE SET SYSTEMS M--"
1.12.6.4.6.2,56226,"4711.40.50 PIPING GAS TURBINE IGNITION GAS SYSTEM MBQ",5121,"HK1003-Rev.0E-3",WBS,"56216",,,,,NotStart,,,,,,,,,,,,,,,,,,,"HK1003 -Blackpoint D2 - Rev.0E DD30092021;PR;4000 WATER STEAM CYCLE / TREATMENT / COOLING SYSTEMS;4711 PIPING;4711.40 PIPING FOR MAIN MACHINE SET SYSTEMS M--"
1.12.6.4.6.3,56225,"4711.40.45 PIPING FOR GAS TURBINE PLANT (BOP SCOPE) MB",5121,"HK1003-Rev.0E-3",WBS,"56216",,,,,NotStart,,,,,,,,,,,,,,,,,,,"HK1003 -Blackpoint D2 - Rev.0E DD30092021;PR;4000 WATER STEAM CYCLE / TREATMENT / COOLING SYSTEMS;4711 PIPING;4711.40 PIPING FOR MAIN MACHINE SET SYSTEMS M--"
1.12.6.4.6.4,56224,"4711.40.40 PIPING FOR HP/IP/LP-TURBINE MAA/B/C/G",5121,"HK1003-Rev.0E-3",WBS,"56216",,,,,NotStart,,,,,,,,,,,,,,,,,,,"HK1003 -Blackpoint D2 - Rev.0E DD30092021;PR;4000 WATER STEAM CYCLE / TREATMENT / COOLING SYSTEMS;4711 PIPING;4711.40 PIPING FOR MAIN MACHINE SET SYSTEMS M--"
1.12.6.4.6.5,56223,"4711.40.35 PIPING FOR AIR REMOVAL SYSTEM MAJ",5121,"HK1003-Rev.0E-3",WBS,"56216",,,,,NotStart,,,,,,,,,,,,,,,,,,,"HK1003 -Blackpoint D2 - Rev.0E DD30092021;PR;4000 WATER STEAM CYCLE / TREATMENT / COOLING SYSTEMS;4711 PIPING;4711.40 PIPING FOR MAIN MACHINE SET SYSTEMS M--"
1.12.6.4.6.6,56222,"4711.40.30 PIPING FOR CONTROL OIL SYSTEM MAX",5121,"HK1003-Rev.0E-3",WBS,"56216",,,,,NotStart,,,,,,,,,,,,,,,,,,,"HK1003 -Blackpoint D2 - Rev.0E DD30092021;PR;4000 WATER STEAM CYCLE / TREATMENT / COOLING SYSTEMS;4711 PIPING;4711.40 PIPING FOR MAIN MACHINE SET SYSTEMS M--"
1.12.6.4.6.7,56221,"4711.40.25 PIPING FOR TURBINE DRAINS SYSTEM MAL",5121,"HK1003-Rev.0E-3",WBS,"56216",,,,,NotStart,,,,,,,,,,,,,,,,,,,"HK1003 -Blackpoint D2 - Rev.0E DD30092021;PR;4000 WATER STEAM CYCLE / TREATMENT / COOLING SYSTEMS;4711 PIPING;4711.40 PIPING FOR MAIN MACHINE SET SYSTEMS M--"
1.12.6.4.6.8,56220,"4711.40.20 PIPING FOR GLAND STEAM SYSTEM MAW",5121,"HK1003-Rev.0E-3",WBS,"56216",,,,,NotStart,,,,,,,,,,,,,,,,,,,"HK1003 -Blackpoint D2 - Rev.0E DD30092021;PR;4000 WATER STEAM CYCLE / TREATMENT / COOLING SYSTEMS;4711 PIPING;4711.40 PIPING FOR MAIN MACHINE SET SYSTEMS M--"
1.12.6.4.6.9,56219,"4711.40.15 PIPING FOR LUBRICANT SUPPLY SYSTEM MAV",5121,"HK1003-Rev.0E-3",WBS,"56216",,,,,NotStart,,,,,,,,,,,,,,,,,,,"HK1003 -Blackpoint D2 - Rev.0E DD30092021;PR;4000 WATER STEAM CYCLE / TREATMENT / COOLING SYSTEMS;4711 PIPING;4711.40 PIPING FOR MAIN MACHINE SET SYSTEMS M--"
1.12.6.4.6.10,56218,"4711.40.10 PIPING FOR LP TURBINE BYPASS STATION MAN",5121,"HK1003-Rev.0E-3",WBS,"56216",,,,,NotStart,,,,,,,,,,,,,,,,,,,"HK1003 -Blackpoint D2 - Rev.0E DD30092021;PR;4000 WATER STEAM CYCLE / TREATMENT / COOLING SYSTEMS;4711 PIPING;4711.40 PIPING FOR MAIN MACHINE SET SYSTEMS M--"
1.12.6.4.6.11,56217,"4711.40.05 PIPING FOR GENERATOR MKA",5121,"HK1003-Rev.0E-3",WBS,"56216",,,,,NotStart,,,,,,,,,,,,,,,,,,,"HK1003 -Blackpoint D2 - Rev.0E DD30092021;PR;4000 WATER STEAM CYCLE / TREATMENT / COOLING SYSTEMS;4711 PIPING;4711.40 PIPING FOR MAIN MACHINE SET SYSTEMS M--"
1.12.6.4.7,56211,"4711.35 PIPING FOR CONDENSATE SYSTEMS LC-",5121,"HK1003-Rev.0E-3",WBS,"56195",,,,100,Complete,,,,,,,,,0,,0,,0,,0,,,,"HK1003 -Blackpoint D2 - Rev.0E DD30092021;PR;4000 WATER STEAM CYCLE / TREATMENT / COOLING SYSTEMS;4711 PIPING"
1.12.6.4.7.1,56215,"4711.35.20 PIPING SEALING AND COOLING DRAINS SYSTEM LCW",5121,"HK1003-Rev.0E-3",WBS,"56211",,,,,NotStart,,,,,,,,,,,,,,,,,,,"HK1003 -Blackpoint D2 - Rev.0E DD30092021;PR;4000 WATER STEAM CYCLE / TREATMENT / COOLING SYSTEMS;4711 PIPING;4711.35 PIPING FOR CONDENSATE SYSTEMS LC-"
1.12.6.4.7.2,56214,"4711.35.15 PIPING STEAM GENERATOR DRAINS SYSTEM LCL",5121,"HK1003-Rev.0E-3",WBS,"56211",,,,,NotStart,,,,,,,,,,,,,,,,,,,"HK1003 -Blackpoint D2 - Rev.0E DD30092021;PR;4000 WATER STEAM CYCLE / TREATMENT / COOLING SYSTEMS;4711 PIPING;4711.35 PIPING FOR CONDENSATE SYSTEMS LC-"
1.12.6.4.7.3,56213,"4711.35.10 PIPING CLEAN DRAINS SYSTEM LCM",5121,"HK1003-Rev.0E-3",WBS,"56211",,,,,NotStart,,,,,,,,,,,,,,,,,,,"HK1003 -Blackpoint D2 - Rev.0E DD30092021;PR;4000 WATER STEAM CYCLE / TREATMENT / COOLING SYSTEMS;4711 PIPING;4711.35 PIPING FOR CONDENSATE SYSTEMS LC-"
1.12.6.4.7.4,56212,"4711.35.05 PIPING MAIN CONDENSATE SYSTEM LCA",5121,"HK1003-Rev.0E-3",WBS,"56211",,,,,NotStart,,,,,,,,,,,,,,,,,,,"HK1003 -Blackpoint D2 - Rev.0E DD30092021;PR;4000 WATER STEAM CYCLE / TREATMENT / COOLING SYSTEMS;4711 PIPING;4711.35 PIPING FOR CONDENSATE SYSTEMS LC-"
1.12.6.4.8,56210,"4711.30 PIPING FOR FEEDWATER SYSTEMS LAB",5121,"HK1003-Rev.0E-3",WBS,"56195",,,,,NotStart,,,,,,,,,,,,,,,,,,,"HK1003 -Blackpoint D2 - Rev.0E DD30092021;PR;4000 WATER STEAM CYCLE / TREATMENT / COOLING SYSTEMS;4711 PIPING"
1.12.6.4.9,56204,"4711.25 PIPING FOR STEAM SYSTEMS LB-",5121,"HK1003-Rev.0E-3",WBS,"56195",,,,100,Complete,,,,,,,,,0,,0,,0,,0,,,,"HK1003 -Blackpoint D2 - Rev.0E DD30092021;PR;4000 WATER STEAM CYCLE / TREATMENT / COOLING SYSTEMS;4711 PIPING"
1.12.6.4.9.1,56209,"4711.25.25 PIPING AUXILIARY STEAM PIPING LBG",5121,"HK1003-Rev.0E-3",WBS,"56204",,,,,NotStart,,,,,,,,,,,,,,,,,,,"HK1003 -Blackpoint D2 - Rev.0E DD30092021;PR;4000 WATER STEAM CYCLE / TREATMENT / COOLING SYSTEMS;4711 PIPING;4711.25 PIPING FOR STEAM SYSTEMS LB-"
1.12.6.4.9.2,56208,"4711.25.20 PIPING IP COLD REHEAT PIPING LBC",5121,"HK1003-Rev.0E-3",WBS,"56204",,,,,NotStart,,,,,,,,,,,,,,,,,,,"HK1003 -Blackpoint D2 - Rev.0E DD30092021;PR;4000 WATER STEAM CYCLE / TREATMENT / COOLING SYSTEMS;4711 PIPING;4711.25 PIPING FOR STEAM SYSTEMS LB-"
1.12.6.4.9.3,56207,"4711.25.15 PIPING IP HOT REHEAT PIPING LBB",5121,"HK1003-Rev.0E-3",WBS,"56204",,,,,NotStart,,,,,,,,,,,,,,,,,,,"HK1003 -Blackpoint D2 - Rev.0E DD30092021;PR;4000 WATER STEAM CYCLE / TREATMENT / COOLING SYSTEMS;4711 PIPING;4711.25 PIPING FOR STEAM SYSTEMS LB-"
1.12.6.4.9.4,56206,"4711.25.10 PIPING LP MAIN STEAM SYSTEM LBA80",5121,"HK1003-Rev.0E-3",WBS,"56204",,,,,NotStart,,,,,,,,,,,,,,,,,,,"HK1003 -Blackpoint D2 - Rev.0E DD30092021;PR;4000 WATER STEAM CYCLE / TREATMENT / COOLING SYSTEMS;4711 PIPING;4711.25 PIPING FOR STEAM SYSTEMS LB-"
1.12.6.4.9.5,56205,"4711.25.05 PIPING HP MAIN STEAM SYSTEM LBA10",5121,"HK1003-Rev.0E-3",WBS,"56204",,,,,NotStart,,,,,,,,,,,,,,,,,,,"HK1003 -Blackpoint D2 - Rev.0E DD30092021;PR;4000 WATER STEAM CYCLE / TREATMENT / COOLING SYSTEMS;4711 PIPING;4711.25 PIPING FOR STEAM SYSTEMS LB-"
1.12.6.4.10,56201,"4711.20 PIPING FOR FUEL SUPPLY SYSTEMS E--",5121,"HK1003-Rev.0E-3",WBS,"56195",,,,100,Complete,,,,,,,,,0,,0,,0,,0,,,,"HK1003 -Blackpoint D2 - Rev.0E DD30092021;PR;4000 WATER STEAM CYCLE / TREATMENT / COOLING SYSTEMS;4711 PIPING"
1.12.6.4.10.1,56203,"4711.20.10 PIPING FUEL OIL SUPPLY EGD",5121,"HK1003-Rev.0E-3",WBS,"56201",,,,,NotStart,,,,,,,,,,,,,,,,,,,"HK1003 -Blackpoint D2 - Rev.0E DD30092021;PR;4000 WATER STEAM CYCLE / TREATMENT / COOLING SYSTEMS;4711 PIPING;4711.20 PIPING FOR FUEL SUPPLY SYSTEMS E--"
1.12.6.4.10.2,56202,"4711.20.05 PIPING FUEL GAS SUPPLY EKG",5121,"HK1003-Rev.0E-3",WBS,"56201",,,,,NotStart,,,,,,,,,,,,,,,,,,,"HK1003 -Blackpoint D2 - Rev.0E DD30092021;PR;4000 WATER STEAM CYCLE / TREATMENT / COOLING SYSTEMS;4711 PIPING;4711.20 PIPING FOR FUEL SUPPLY SYSTEMS E--"
1.12.6.4.11,56200,"4711.15 ERECTION PIPING SYSTEMS SUMMARY",5121,"HK1003-Rev.0E-3",WBS,"56195",,,,,NotStart,,,,,,,,,,,,,,,,,,,"HK1003 -Blackpoint D2 - Rev.0E DD30092021;PR;4000 WATER STEAM CYCLE / TREATMENT / COOLING SYSTEMS;4711 PIPING"
1.12.6.4.12,56197,"4711.10 ORDERING PIPING SYSTEMS",5121,"HK1003-Rev.0E-3",WBS,"56195",,,,100,Complete,,,,,,,,,0,,0,,0,,0,,,,"HK1003 -Blackpoint D2 - Rev.0E DD30092021;PR;4000 WATER STEAM CYCLE / TREATMENT / COOLING SYSTEMS;4711 PIPING"
1.12.6.4.12.1,56199,"4711.10.10 ORDERING PIPING ALLOYED MATERIAL",5121,"HK1003-Rev.0E-3",WBS,"56197",,,,,NotStart,,,,,,,,,,,,,,,,,,,"HK1003 -Blackpoint D2 - Rev.0E DD30092021;PR;4000 WATER STEAM CYCLE / TREATMENT / COOLING SYSTEMS;4711 PIPING;4711.10 ORDERING PIPING SYSTEMS"
1.12.6.4.12.2,56198,"4711.10.05 ORDERING PIPING CARBON STEEL",5121,"HK1003-Rev.0E-3",WBS,"56197",,,,,NotStart,,,,,,,,,,,,,,,,,,,"HK1003 -Blackpoint D2 - Rev.0E DD30092021;PR;4000 WATER STEAM CYCLE / TREATMENT / COOLING SYSTEMS;4711 PIPING;4711.10 ORDERING PIPING SYSTEMS"
1.12.6.4.13,56196,"4711.05 BASIC DESIGN PIPING",5121,"HK1003-Rev.0E-3",WBS,"56195",,,,,NotStart,,,,,,,,,,,,,,,,,,,"HK1003 -Blackpoint D2 - Rev.0E DD30092021;PR;4000 WATER STEAM CYCLE / TREATMENT / COOLING SYSTEMS;4711 PIPING"
1.12.6.5,56194,"4681 COMPRESSED AIR GENERATION SYSTEM SC/QFB",5121,"HK1003-Rev.0E-3",WBS,"56145",,,,,NotStart,,,,,,,,,,,,,,,,,,,"HK1003 -Blackpoint D2 - Rev.0E DD30092021;PR;4000 WATER STEAM CYCLE / TREATMENT / COOLING SYSTEMS"
1.12.6.6,56183,"4606 AUXILIARY PUMPS LCM/GHC/GM/PGB/PCB/LCL/LCA51/MBU",5121,"HK1003-Rev.0E-3",WBS,"56145",,,,100,Complete,,,,,,,,,0,,0,,0,,0,,,,"HK1003 -Blackpoint D2 - Rev.0E DD30092021;PR;4000 WATER STEAM CYCLE / TREATMENT / COOLING SYSTEMS"
1.12.6.6.1,56193,"4606.50 AIR PREHEATER CIRCULATING PUMP SKID MBL",5121,"HK1003-Rev.0E-3",WBS,"56183",,,,,NotStart,,,,,,,,,,,,,,,,,,,"HK1003 -Blackpoint D2 - Rev.0E DD30092021;PR;4000 WATER STEAM CYCLE / TREATMENT / COOLING SYSTEMS;4606 AUXILIARY PUMPS LCM/GHC/GM/PGB/PCB/LCL/LCA51/MBU"
1.12.6.6.2,56192,"4606.45 NOX TRANSFER PUMPS (OPTION) MBU",5121,"HK1003-Rev.0E-3",WBS,"56183",,,,,NotStart,,,,,,,,,,,,,,,,,,,"HK1003 -Blackpoint D2 - Rev.0E DD30092021;PR;4000 WATER STEAM CYCLE / TREATMENT / COOLING SYSTEMS;4606 AUXILIARY PUMPS LCM/GHC/GM/PGB/PCB/LCL/LCA51/MBU"
1.12.6.6.3,56191,"4606.40 CONDENSATE RECIRCULATING PUMP LCA51",5121,"HK1003-Rev.0E-3",WBS,"56183",,,,,NotStart,,,,,,,,,,,,,,,,,,,"HK1003 -Blackpoint D2 - Rev.0E DD30092021;PR;4000 WATER STEAM CYCLE / TREATMENT / COOLING SYSTEMS;4606 AUXILIARY PUMPS LCM/GHC/GM/PGB/PCB/LCL/LCA51/MBU"
1.12.6.6.4,56190,"4606.35 STEAM GENERATOR DRAIN PUMP LCL",5121,"HK1003-Rev.0E-3",WBS,"56183",,,,,NotStart,,,,,,,,,,,,,,,,,,,"HK1003 -Blackpoint D2 - Rev.0E DD30092021;PR;4000 WATER STEAM CYCLE / TREATMENT / COOLING SYSTEMS;4606 AUXILIARY PUMPS LCM/GHC/GM/PGB/PCB/LCL/LCA51/MBU"
1.12.6.6.5,56189,"4606.30 SERVICE COOLING WATER PUMP PCB",5121,"HK1003-Rev.0E-3",WBS,"56183",,,,,NotStart,,,,,,,,,,,,,,,,,,,"HK1003 -Blackpoint D2 - Rev.0E DD30092021;PR;4000 WATER STEAM CYCLE / TREATMENT / COOLING SYSTEMS;4606 AUXILIARY PUMPS LCM/GHC/GM/PGB/PCB/LCL/LCA51/MBU"
1.12.6.6.6,56188,"4606.25 CLOSED COOLING WATER PUMPS PGB",5121,"HK1003-Rev.0E-3",WBS,"56183",,,,,NotStart,,,,,,,,,,,,,,,,,,,"HK1003 -Blackpoint D2 - Rev.0E DD30092021;PR;4000 WATER STEAM CYCLE / TREATMENT / COOLING SYSTEMS;4606 AUXILIARY PUMPS LCM/GHC/GM/PGB/PCB/LCL/LCA51/MBU"
1.12.6.6.7,56187,"4606.20 OIL WATER SEPARATOR PUMPS FOR UBH01",5121,"HK1003-Rev.0E-3",WBS,"56183",,,,,NotStart,,,,,,,,,,,,,,,,,,,"HK1003 -Blackpoint D2 - Rev.0E DD30092021;PR;4000 WATER STEAM CYCLE / TREATMENT / COOLING SYSTEMS;4606 AUXILIARY PUMPS LCM/GHC/GM/PGB/PCB/LCL/LCA51/MBU"
1.12.6.6.8,56186,"4606.15 SUMP PUMPS GM",5121,"HK1003-Rev.0E-3",WBS,"56183",,,,,NotStart,,,,,,,,,,,,,,,,,,,"HK1003 -Blackpoint D2 - Rev.0E DD30092021;PR;4000 WATER STEAM CYCLE / TREATMENT / COOLING SYSTEMS;4606 AUXILIARY PUMPS LCM/GHC/GM/PGB/PCB/LCL/LCA51/MBU"
1.12.6.6.9,56185,"4606.10 DEMINERALIZED WATER PUMPS GHC",5121,"HK1003-Rev.0E-3",WBS,"56183",,,,,NotStart,,,,,,,,,,,,,,,,,,,"HK1003 -Blackpoint D2 - Rev.0E DD30092021;PR;4000 WATER STEAM CYCLE / TREATMENT / COOLING SYSTEMS;4606 AUXILIARY PUMPS LCM/GHC/GM/PGB/PCB/LCL/LCA51/MBU"
1.12.6.6.10,56184,"4606.05 CLEAN DRAINS PUMP LCM",5121,"HK1003-Rev.0E-3",WBS,"56183",,,,,NotStart,,,,,,,,,,,,,,,,,,,"HK1003 -Blackpoint D2 - Rev.0E DD30092021;PR;4000 WATER STEAM CYCLE / TREATMENT / COOLING SYSTEMS;4606 AUXILIARY PUMPS LCM/GHC/GM/PGB/PCB/LCL/LCA51/MBU"
1.12.6.7,56178,"4601 MAIN PUMPS LAC/LCB/PAC/LDK",5121,"HK1003-Rev.0E-3",WBS,"56145",,,,100,Complete,,,,,,,,,0,,0,,0,,0,,,,"HK1003 -Blackpoint D2 - Rev.0E DD30092021;PR;4000 WATER STEAM CYCLE / TREATMENT / COOLING SYSTEMS"
1.12.6.7.1,56182,"4601.20 CONDENSATE POLISHING PUMPS LDK",5121,"HK1003-Rev.0E-3",WBS,"56178",,,,,NotStart,,,,,,,,,,,,,,,,,,,"HK1003 -Blackpoint D2 - Rev.0E DD30092021;PR;4000 WATER STEAM CYCLE / TREATMENT / COOLING SYSTEMS;4601 MAIN PUMPS LAC/LCB/PAC/LDK"
1.12.6.7.2,56181,"4601.15 MAIN COOLING WATER PUMPS PAC",5121,"HK1003-Rev.0E-3",WBS,"56178",,,,,NotStart,,,,,,,,,,,,,,,,,,,"HK1003 -Blackpoint D2 - Rev.0E DD30092021;PR;4000 WATER STEAM CYCLE / TREATMENT / COOLING SYSTEMS;4601 MAIN PUMPS LAC/LCB/PAC/LDK"
1.12.6.7.3,56180,"4601.10 CONDENSATE EXTRACTION PUMPS LCB",5121,"HK1003-Rev.0E-3",WBS,"56178",,,,,NotStart,,,,,,,,,,,,,,,,,,,"HK1003 -Blackpoint D2 - Rev.0E DD30092021;PR;4000 WATER STEAM CYCLE / TREATMENT / COOLING SYSTEMS;4601 MAIN PUMPS LAC/LCB/PAC/LDK"
1.12.6.7.4,56179,"4601.05 FEEDWATER PUMPS LAC",5121,"HK1003-Rev.0E-3",WBS,"56178",,,,,NotStart,,,,,,,,,,,,,,,,,,,"HK1003 -Blackpoint D2 - Rev.0E DD30092021;PR;4000 WATER STEAM CYCLE / TREATMENT / COOLING SYSTEMS;4601 MAIN PUMPS LAC/LCB/PAC/LDK"
1.12.6.8,56175,"4531 TANKS, SITE FABRICATION GAD/GHC",5121,"HK1003-Rev.0E-3",WBS,"56145",,,,100,Complete,,,,,,,,,0,,0,,0,,0,,,,"HK1003 -Blackpoint D2 - Rev.0E DD30092021;PR;4000 WATER STEAM CYCLE / TREATMENT / COOLING SYSTEMS"
1.12.6.8.1,56177,"4531.10 DEMINERALIZED WATER TANK GHC",5121,"HK1003-Rev.0E-3",WBS,"56175",,,,,NotStart,,,,,,,,,,,,,,,,,,,"HK1003 -Blackpoint D2 - Rev.0E DD30092021;PR;4000 WATER STEAM CYCLE / TREATMENT / COOLING SYSTEMS;4531 TANKS, SITE FABRICATION GAD/GHC"
1.12.6.8.2,56176,"4531.05 RAW WATER TANK GAD",5121,"HK1003-Rev.0E-3",WBS,"56175",,,,,NotStart,,,,,,,,,,,,,,,,,,,"HK1003 -Blackpoint D2 - Rev.0E DD30092021;PR;4000 WATER STEAM CYCLE / TREATMENT / COOLING SYSTEMS;4531 TANKS, SITE FABRICATION GAD/GHC"
1.12.6.9,56166,"4521 HEAT EXCHANGERS / TANKS LBG/PGB/PDB/LCM/LBH/MBQ/MBL",5121,"HK1003-Rev.0E-3",WBS,"56145",,,,100,Complete,,,,,,,,,0,,0,,0,,0,,,,"HK1003 -Blackpoint D2 - Rev.0E DD30092021;PR;4000 WATER STEAM CYCLE / TREATMENT / COOLING SYSTEMS"
1.12.6.9.1,56174,"4521.40 ANTI-ICING HEAT EXCHANGER MBL",5121,"HK1003-Rev.0E-3",WBS,"56166",,,,,NotStart,,,,,,,,,,,,,,,,,,,"HK1003 -Blackpoint D2 - Rev.0E DD30092021;PR;4000 WATER STEAM CYCLE / TREATMENT / COOLING SYSTEMS;4521 HEAT EXCHANGERS / TANKS LBG/PGB/PDB/LCM/LBH/MBQ/MBL"
1.12.6.9.2,56173,"4521.35 IGNITION GAS TANK MBQ",5121,"HK1003-Rev.0E-3",WBS,"56166",,,,,NotStart,,,,,,,,,,,,,,,,,,,"HK1003 -Blackpoint D2 - Rev.0E DD30092021;PR;4000 WATER STEAM CYCLE / TREATMENT / COOLING SYSTEMS;4521 HEAT EXCHANGERS / TANKS LBG/PGB/PDB/LCM/LBH/MBQ/MBL"
1.12.6.9.3,56172,"4521.30 CLEAN DRAINS FLASH TANK LBH",5121,"HK1003-Rev.0E-3",WBS,"56166",,,,,NotStart,,,,,,,,,,,,,,,,,,,"HK1003 -Blackpoint D2 - Rev.0E DD30092021;PR;4000 WATER STEAM CYCLE / TREATMENT / COOLING SYSTEMS;4521 HEAT EXCHANGERS / TANKS LBG/PGB/PDB/LCM/LBH/MBQ/MBL"
1.12.6.9.4,56171,"4521.25 CLEAN DRAINS FLASH / CONDENSATE TANK LCM",5121,"HK1003-Rev.0E-3",WBS,"56166",,,,,NotStart,,,,,,,,,,,,,,,,,,,"HK1003 -Blackpoint D2 - Rev.0E DD30092021;PR;4000 WATER STEAM CYCLE / TREATMENT / COOLING SYSTEMS;4521 HEAT EXCHANGERS / TANKS LBG/PGB/PDB/LCM/LBH/MBQ/MBL"
1.12.6.9.5,56170,"4521.20 DEBRIS FILTER FOR PCB-SYSTEM PDB",5121,"HK1003-Rev.0E-3",WBS,"56166",,,,,NotStart,,,,,,,,,,,,,,,,,,,"HK1003 -Blackpoint D2 - Rev.0E DD30092021;PR;4000 WATER STEAM CYCLE / TREATMENT / COOLING SYSTEMS;4521 HEAT EXCHANGERS / TANKS LBG/PGB/PDB/LCM/LBH/MBQ/MBL"
1.12.6.9.6,56169,"4521.15 CCW EXPANSION TANK PGB",5121,"HK1003-Rev.0E-3",WBS,"56166",,,,,NotStart,,,,,,,,,,,,,,,,,,,"HK1003 -Blackpoint D2 - Rev.0E DD30092021;PR;4000 WATER STEAM CYCLE / TREATMENT / COOLING SYSTEMS;4521 HEAT EXCHANGERS / TANKS LBG/PGB/PDB/LCM/LBH/MBQ/MBL"
1.12.6.9.7,56168,"4521.10 CCW HEAT EXCHANGER PGB",5121,"HK1003-Rev.0E-3",WBS,"56166",,,,,NotStart,,,,,,,,,,,,,,,,,,,"HK1003 -Blackpoint D2 - Rev.0E DD30092021;PR;4000 WATER STEAM CYCLE / TREATMENT / COOLING SYSTEMS;4521 HEAT EXCHANGERS / TANKS LBG/PGB/PDB/LCM/LBH/MBQ/MBL"
1.12.6.9.8,56167,"4521.05 ELECTRICAL SUPERHEATER LBG",5121,"HK1003-Rev.0E-3",WBS,"56166",,,,,NotStart,,,,,,,,,,,,,,,,,,,"HK1003 -Blackpoint D2 - Rev.0E DD30092021;PR;4000 WATER STEAM CYCLE / TREATMENT / COOLING SYSTEMS;4521 HEAT EXCHANGERS / TANKS LBG/PGB/PDB/LCM/LBH/MBQ/MBL"
1.12.6.10,56165,"4451 DOSING SYSTEM FOR W/S CYCLE QC",5121,"HK1003-Rev.0E-3",WBS,"56145",,,,,NotStart,,,,,,,,,,,,,,,,,,,"HK1003 -Blackpoint D2 - Rev.0E DD30092021;PR;4000 WATER STEAM CYCLE / TREATMENT / COOLING SYSTEMS"
1.12.6.11,56164,"4441 SAMPLING SYSTEM W/S CYCLE QU",5121,"HK1003-Rev.0E-3",WBS,"56145",,,,,NotStart,,,,,,,,,,,,,,,,,,,"HK1003 -Blackpoint D2 - Rev.0E DD30092021;PR;4000 WATER STEAM CYCLE / TREATMENT / COOLING SYSTEMS"
1.12.6.12,56162,"4431 CHEMICAL COOLING WATER TREATMENT SYSTEMS PBE/PBQ/PUN",5121,"HK1003-Rev.0E-3",WBS,"56145",,,,100,Complete,,,,,,,,,0,,0,,0,,0,,,,"HK1003 -Blackpoint D2 - Rev.0E DD30092021;PR;4000 WATER STEAM CYCLE / TREATMENT / COOLING SYSTEMS"
1.12.6.12.1,56163,"4431.05 COOLING WATER MAKEUP SYSTEM PBE/PBQ/PUN",5121,"HK1003-Rev.0E-3",WBS,"56162",,,,,NotStart,,,,,,,,,,,,,,,,,,,"HK1003 -Blackpoint D2 - Rev.0E DD30092021;PR;4000 WATER STEAM CYCLE / TREATMENT / COOLING SYSTEMS;4431 CHEMICAL COOLING WATER TREATMENT SYSTEMS PBE/PBQ/PUN"
1.12.6.13,56161,"4421 DEMINERALIZATION PLANT SYSTEM GC",5121,"HK1003-Rev.0E-3",WBS,"56145",,,,,NotStart,,,,,,,,,,,,,,,,,,,"HK1003 -Blackpoint D2 - Rev.0E DD30092021;PR;4000 WATER STEAM CYCLE / TREATMENT / COOLING SYSTEMS"
1.12.6.14,56160,"4411 CONDENSATE POLISHING / DEMINERALIZING PLANT LD",5121,"HK1003-Rev.0E-3",WBS,"56145",,,,,NotStart,,,,,,,,,,,,,,,,,,,"HK1003 -Blackpoint D2 - Rev.0E DD30092021;PR;4000 WATER STEAM CYCLE / TREATMENT / COOLING SYSTEMS"
1.12.6.15,56159,"4361 COOLING TOWER EQUIPMENT FOR CIRCULATING WATER PAD",5121,"HK1003-Rev.0E-3",WBS,"56145",,,,,NotStart,,,,,,,,,,,,,,,,,,,"HK1003 -Blackpoint D2 - Rev.0E DD30092021;PR;4000 WATER STEAM CYCLE / TREATMENT / COOLING SYSTEMS"
1.12.6.16,56156,"4341 CLEANING SYSTEMS FOR HEAT EXCH., CONDENSER PA-",5121,"HK1003-Rev.0E-3",WBS,"56145",,,,100,Complete,,,,,,,,,0,,0,,0,,0,,,,"HK1003 -Blackpoint D2 - Rev.0E DD30092021;PR;4000 WATER STEAM CYCLE / TREATMENT / COOLING SYSTEMS"
1.12.6.16.1,56158,"4341.10 CONDENSER TUBE CLEANING SYSTEM PAH",5121,"HK1003-Rev.0E-3",WBS,"56156",,,,,NotStart,,,,,,,,,,,,,,,,,,,"HK1003 -Blackpoint D2 - Rev.0E DD30092021;PR;4000 WATER STEAM CYCLE / TREATMENT / COOLING SYSTEMS;4341 CLEANING SYSTEMS FOR HEAT EXCH., CONDENSER PA-"
1.12.6.16.2,56157,"4341.05 COOLING WATER BAR SCREEN PAB",5121,"HK1003-Rev.0E-3",WBS,"56156",,,,,NotStart,,,,,,,,,,,,,,,,,,,"HK1003 -Blackpoint D2 - Rev.0E DD30092021;PR;4000 WATER STEAM CYCLE / TREATMENT / COOLING SYSTEMS;4341 CLEANING SYSTEMS FOR HEAT EXCH., CONDENSER PA-"
1.12.6.17,56146,"4110 PROCESS ENGINEERING",5121,"HK1003-Rev.0E-3",WBS,"56145",,,,100,Complete,,,,,,,,,0,,0,,0,,0,,,,"HK1003 -Blackpoint D2 - Rev.0E DD30092021;PR;4000 WATER STEAM CYCLE / TREATMENT / COOLING SYSTEMS"
1.12.6.17.1,56155,"4110.45 PROCESS ENGINEERING THERMODYNAMIC DIAGNOSIS",5121,"HK1003-Rev.0E-3",WBS,"56146",,,,,NotStart,,,,,,,,,,,,,,,,,,,"HK1003 -Blackpoint D2 - Rev.0E DD30092021;PR;4000 WATER STEAM CYCLE / TREATMENT / COOLING SYSTEMS;4110 PROCESS ENGINEERING"
1.12.6.17.2,56154,"4110.40 PROCESS ENGINEERING AUXILIARY POWER SYSTEMS",5121,"HK1003-Rev.0E-3",WBS,"56146",,,,,NotStart,,,,,,,,,,,,,,,,,,,"HK1003 -Blackpoint D2 - Rev.0E DD30092021;PR;4000 WATER STEAM CYCLE / TREATMENT / COOLING SYSTEMS;4110 PROCESS ENGINEERING"
1.12.6.17.3,56153,"4110.35 PROCESS ENGINEERING BLACK BOXES",5121,"HK1003-Rev.0E-3",WBS,"56146",,,,,NotStart,,,,,,,,,,,,,,,,,,,"HK1003 -Blackpoint D2 - Rev.0E DD30092021;PR;4000 WATER STEAM CYCLE / TREATMENT / COOLING SYSTEMS;4110 PROCESS ENGINEERING"
1.12.6.17.4,56152,"4110.30 PROCESS ENGINEERING GM",5121,"HK1003-Rev.0E-3",WBS,"56146",,,,,NotStart,,,,,,,,,,,,,,,,,,,"HK1003 -Blackpoint D2 - Rev.0E DD30092021;PR;4000 WATER STEAM CYCLE / TREATMENT / COOLING SYSTEMS;4110 PROCESS ENGINEERING"
1.12.6.17.5,56151,"4110.25 PROCESS ENGINEERING GHC, GA, GK",5121,"HK1003-Rev.0E-3",WBS,"56146",,,,,NotStart,,,,,,,,,,,,,,,,,,,"HK1003 -Blackpoint D2 - Rev.0E DD30092021;PR;4000 WATER STEAM CYCLE / TREATMENT / COOLING SYSTEMS;4110 PROCESS ENGINEERING"
1.12.6.17.6,56150,"4110.20 PROCESS ENGINEERING PAB, PAD10; PCB, PGB",5121,"HK1003-Rev.0E-3",WBS,"56146",,,,,NotStart,,,,,,,,,,,,,,,,,,,"HK1003 -Blackpoint D2 - Rev.0E DD30092021;PR;4000 WATER STEAM CYCLE / TREATMENT / COOLING SYSTEMS;4110 PROCESS ENGINEERING"
1.12.6.17.7,56149,"4110.15 PROCESS ENGINEERING LAA, LAB, LBA10/80, LBB, LBC, LBG, LC",5121,"HK1003-Rev.0E-3",WBS,"56146",,,,,NotStart,,,,,,,,,,,,,,,,,,,"HK1003 -Blackpoint D2 - Rev.0E DD30092021;PR;4000 WATER STEAM CYCLE / TREATMENT / COOLING SYSTEMS;4110 PROCESS ENGINEERING"
1.12.6.17.8,56148,"4110.10 PROCESS ENGINEERING STEAM GENERATOR SYSTEMS",5121,"HK1003-Rev.0E-3",WBS,"56146",,,,,NotStart,,,,,,,,,,,,,,,,,,,"HK1003 -Blackpoint D2 - Rev.0E DD30092021;PR;4000 WATER STEAM CYCLE / TREATMENT / COOLING SYSTEMS;4110 PROCESS ENGINEERING"
1.12.6.17.9,56147,"4110.05 GENERAL ACTIVITIES (KICK-OFF PHASE) PROCESS / I&C",5121,"HK1003-Rev.0E-3",WBS,"56146",,,,,NotStart,,,,,,,,,,,,,,,,,,,"HK1003 -Blackpoint D2 - Rev.0E DD30092021;PR;4000 WATER STEAM CYCLE / TREATMENT / COOLING SYSTEMS;4110 PROCESS ENGINEERING"
1.12.7,56086,"3000 TURBOSET GAS TURBINE 12",5121,"HK1003-Rev.0E-3",WBS,"55934",,,,100,Complete,,,,,,,,,0,,0,,0,,0,,,,"HK1003 -Blackpoint D2 - Rev.0E DD30092021;PR"
1.12.7.1,56138,"3621 GENERATOR AUXILIARY SYSTEMS FOR GT 12 MK",5121,"HK1003-Rev.0E-3",WBS,"56086",,,,100,Complete,,,,,,,,,0,,0,,0,,0,,,,"HK1003 -Blackpoint D2 - Rev.0E DD30092021;PR;3000 TURBOSET GAS TURBINE 12"
1.12.7.1.1,56144,"3621.35 SEAL OIL SYSTEM MKW",5121,"HK1003-Rev.0E-3",WBS,"56138",,,,,NotStart,,,,,,,,,,,,,,,,,,,"HK1003 -Blackpoint D2 - Rev.0E DD30092021;PR;3000 TURBOSET GAS TURBINE 12;3621 GENERATOR AUXILIARY SYSTEMS FOR GT 12 MK"
1.12.7.1.2,56143,"3621.30 GAS SYSTEM MKG",5121,"HK1003-Rev.0E-3",WBS,"56138",,,,,NotStart,,,,,,,,,,,,,,,,,,,"HK1003 -Blackpoint D2 - Rev.0E DD30092021;PR;3000 TURBOSET GAS TURBINE 12;3621 GENERATOR AUXILIARY SYSTEMS FOR GT 12 MK"
1.12.7.1.3,56142,"3621.25 ENCLOSURE FOR GT GENERATOR",5121,"HK1003-Rev.0E-3",WBS,"56138",,,,,NotStart,,,,,,,,,,,,,,,,,,,"HK1003 -Blackpoint D2 - Rev.0E DD30092021;PR;3000 TURBOSET GAS TURBINE 12;3621 GENERATOR AUXILIARY SYSTEMS FOR GT 12 MK"
1.12.7.1.4,56139,"3531.20  FIN FAN MPR FOR GT GENERATOR MKA (OPTION)",5121,"HK1003-Rev.0E-3",WBS,"56138",,,,100,Complete,,,,,,,,,0,,0,,0,,0,,,,"HK1003 -Blackpoint D2 - Rev.0E DD30092021;PR;3000 TURBOSET GAS TURBINE 12;3621 GENERATOR AUXILIARY SYSTEMS FOR GT 12 MK"
1.12.7.1.4.1,56141,"3531.20.10 FIN FAN MPR FOR GT GENERATOR MKA (OPTION)",5121,"HK1003-Rev.0E-3",WBS,"56139",,,,,NotStart,,,,,,,,,,,,,,,,,,,"HK1003 -Blackpoint D2 - Rev.0E DD30092021;PR;3000 TURBOSET GAS TURBINE 12;3621 GENERATOR AUXILIARY SYSTEMS FOR GT 12 MK;3531.20  FIN FAN MPR FOR GT GENERATOR MKA (OPTION)"
1.12.7.1.4.2,56140,"3531.20.05 FIN FAN MPR SOFTWARE SUBMITTAL FOR GT GENERATOR MKA (OPTION)",5121,"HK1003-Rev.0E-3",WBS,"56139",,,,,NotStart,,,,,,,,,,,,,,,,,,,"HK1003 -Blackpoint D2 - Rev.0E DD30092021;PR;3000 TURBOSET GAS TURBINE 12;3621 GENERATOR AUXILIARY SYSTEMS FOR GT 12 MK;3531.20  FIN FAN MPR FOR GT GENERATOR MKA (OPTION)"
1.12.7.2,56132,"3600 TURBINE PACKAGE - GENERATOR FOR GAS TURBINE 12 MK",5121,"HK1003-Rev.0E-3",WBS,"56086",,,,100,Complete,,,,,,,,,0,,0,,0,,0,,,,"HK1003 -Blackpoint D2 - Rev.0E DD30092021;PR;3000 TURBOSET GAS TURBINE 12"
1.12.7.2.1,56137,"3600.17 GT GENERATOR EMBEDDED PARTS MK-",5121,"HK1003-Rev.0E-3",WBS,"56132",,,,,NotStart,,,,,,,,,,,,,,,,,,,"HK1003 -Blackpoint D2 - Rev.0E DD30092021;PR;3000 TURBOSET GAS TURBINE 12;3600 TURBINE PACKAGE - GENERATOR FOR GAS TURBINE 12 MK"
1.12.7.2.2,56136,"3600.11 GENERATOR ENCLOSURE FOR GT12",5121,"HK1003-Rev.0E-3",WBS,"56132",,,,,NotStart,,,,,,,,,,,,,,,,,,,"HK1003 -Blackpoint D2 - Rev.0E DD30092021;PR;3000 TURBOSET GAS TURBINE 12;3600 TURBINE PACKAGE - GENERATOR FOR GAS TURBINE 12 MK"
1.12.7.2.3,56135,"3600.11 GENERATOR COOLER 12MKA70 FOR GT12",5121,"HK1003-Rev.0E-3",WBS,"56132",,,,,NotStart,,,,,,,,,,,,,,,,,,,"HK1003 -Blackpoint D2 - Rev.0E DD30092021;PR;3000 TURBOSET GAS TURBINE 12;3600 TURBINE PACKAGE - GENERATOR FOR GAS TURBINE 12 MK"
1.12.7.2.4,56134,"3600.10 GENERATOR FOR GT 12MKA INCL. COOLER 12MKA70",5121,"HK1003-Rev.0E-3",WBS,"56132",,,,,NotStart,,,,,,,,,,,,,,,,,,,"HK1003 -Blackpoint D2 - Rev.0E DD30092021;PR;3000 TURBOSET GAS TURBINE 12;3600 TURBINE PACKAGE - GENERATOR FOR GAS TURBINE 12 MK"
1.12.7.2.5,56133,"3600.05 GT GENERATOR ENGINEERING TRANSMITTAL SCHEDULE",5121,"HK1003-Rev.0E-3",WBS,"56132",,,,,NotStart,,,,,,,,,,,,,,,,,,,"HK1003 -Blackpoint D2 - Rev.0E DD30092021;PR;3000 TURBOSET GAS TURBINE 12;3600 TURBINE PACKAGE - GENERATOR FOR GAS TURBINE 12 MK"
1.12.7.3,56097,"3521 GAS TURBINE 12 AUXILIARY SYSTEMS MB",5121,"HK1003-Rev.0E-3",WBS,"56086",,,,100,Complete,,,,,,,,,0,,0,,0,,0,,,,"HK1003 -Blackpoint D2 - Rev.0E DD30092021;PR;3000 TURBOSET GAS TURBINE 12"
1.12.7.3.1,56129,"6295.10 GAS TURBINE ENCLOSURE INCL. VENTILATION MPB/SAM",5121,"HK1003-Rev.0E-3",WBS,"56097",,,,100,Complete,,,,,,,,,0,,0,,0,,0,,,,"HK1003 -Blackpoint D2 - Rev.0E DD30092021;PR;3000 TURBOSET GAS TURBINE 12;3521 GAS TURBINE 12 AUXILIARY SYSTEMS MB"
1.12.7.3.1.1,56131,"6295.10.10 GAS TURBINE ENCLOSURE INCL. AUX.SYS. 12MPB",5121,"HK1003-Rev.0E-3",WBS,"56129",,,,,NotStart,,,,,,,,,,,,,,,,,,,"HK1003 -Blackpoint D2 - Rev.0E DD30092021;PR;3000 TURBOSET GAS TURBINE 12;3521 GAS TURBINE 12 AUXILIARY SYSTEMS MB;6295.10 GAS TURBINE ENCLOSURE INCL. VENTILATION MPB/SAM"
1.12.7.3.1.2,56130,"6295.10.05 GAS TURBINE ENCLOSURE SOFTWARE SUBMITTAL",5121,"HK1003-Rev.0E-3",WBS,"56129",,,,,NotStart,,,,,,,,,,,,,,,,,,,"HK1003 -Blackpoint D2 - Rev.0E DD30092021;PR;3000 TURBOSET GAS TURBINE 12;3521 GAS TURBINE 12 AUXILIARY SYSTEMS MB;6295.10 GAS TURBINE ENCLOSURE INCL. VENTILATION MPB/SAM"
1.12.7.3.2,56126,"6295.10 FIRE FIGHTING/GAS DETECTION FOR NOISE ENCLOSURE CYE/CYQ/SGJ",5121,"HK1003-Rev.0E-3",WBS,"56097",,,,100,Complete,,,,,,,,,0,,0,,0,,0,,,,"HK1003 -Blackpoint D2 - Rev.0E DD30092021;PR;3000 TURBOSET GAS TURBINE 12;3521 GAS TURBINE 12 AUXILIARY SYSTEMS MB"
1.12.7.3.2.1,56128,"6295.10.10 FIRE FIGHTING/GAS DETECTION FOR NOISE ENCLOSURE/PCC 12CYE/CYQ/SGJ",5121,"HK1003-Rev.0E-3",WBS,"56126",,,,,NotStart,,,,,,,,,,,,,,,,,,,"HK1003 -Blackpoint D2 - Rev.0E DD30092021;PR;3000 TURBOSET GAS TURBINE 12;3521 GAS TURBINE 12 AUXILIARY SYSTEMS MB;6295.10 FIRE FIGHTING/GAS DETECTION FOR NOISE ENCLOSURE CYE/CYQ/SGJ"
1.12.7.3.2.2,56127,"6295.10.05 FIRE FIGHTING/GAS DETECTION SOFTWARE SUBMITTAL",5121,"HK1003-Rev.0E-3",WBS,"56126",,,,,NotStart,,,,,,,,,,,,,,,,,,,"HK1003 -Blackpoint D2 - Rev.0E DD30092021;PR;3000 TURBOSET GAS TURBINE 12;3521 GAS TURBINE 12 AUXILIARY SYSTEMS MB;6295.10 FIRE FIGHTING/GAS DETECTION FOR NOISE ENCLOSURE CYE/CYQ/SGJ"
1.12.7.3.3,56120,"3571.10 EXHAUST GAS SYSTEM MBR",5121,"HK1003-Rev.0E-3",WBS,"56097",,,,100,Complete,,,,,,,,,0,,0,,0,,0,,,,"HK1003 -Blackpoint D2 - Rev.0E DD30092021;PR;3000 TURBOSET GAS TURBINE 12;3521 GAS TURBINE 12 AUXILIARY SYSTEMS MB"
1.12.7.3.3.1,56125,"3571.30.10 TURBINE EXHAUST MANIFOLD 12MBR",5121,"HK1003-Rev.0E-3",WBS,"56120",,,,,NotStart,,,,,,,,,,,,,,,,,,,"HK1003 -Blackpoint D2 - Rev.0E DD30092021;PR;3000 TURBOSET GAS TURBINE 12;3521 GAS TURBINE 12 AUXILIARY SYSTEMS MB;3571.10 EXHAUST GAS SYSTEM MBR"
1.12.7.3.3.2,56124,"3571.30.05 TURBINE EXHAUST MANIFOLD SOFTWARE SUBMITTAL",5121,"HK1003-Rev.0E-3",WBS,"56120",,,,,NotStart,,,,,,,,,,,,,,,,,,,"HK1003 -Blackpoint D2 - Rev.0E DD30092021;PR;3000 TURBOSET GAS TURBINE 12;3521 GAS TURBINE 12 AUXILIARY SYSTEMS MB;3571.10 EXHAUST GAS SYSTEM MBR"
1.12.7.3.3.3,56123,"3571.20.10 EXHAUST GAS STACK MBR (for GT-PAC only)",5121,"HK1003-Rev.0E-3",WBS,"56120",,,,,NotStart,,,,,,,,,,,,,,,,,,,"HK1003 -Blackpoint D2 - Rev.0E DD30092021;PR;3000 TURBOSET GAS TURBINE 12;3521 GAS TURBINE 12 AUXILIARY SYSTEMS MB;3571.10 EXHAUST GAS SYSTEM MBR"
1.12.7.3.3.4,56122,"3571.10.10 DIFFUSER 12MBR",5121,"HK1003-Rev.0E-3",WBS,"56120",,,,,NotStart,,,,,,,,,,,,,,,,,,,"HK1003 -Blackpoint D2 - Rev.0E DD30092021;PR;3000 TURBOSET GAS TURBINE 12;3521 GAS TURBINE 12 AUXILIARY SYSTEMS MB;3571.10 EXHAUST GAS SYSTEM MBR"
1.12.7.3.3.5,56121,"3571.10.05 DIFFUSER SOFTWARE SUBMITTAL",5121,"HK1003-Rev.0E-3",WBS,"56120",,,,,NotStart,,,,,,,,,,,,,,,,,,,"HK1003 -Blackpoint D2 - Rev.0E DD30092021;PR;3000 TURBOSET GAS TURBINE 12;3521 GAS TURBINE 12 AUXILIARY SYSTEMS MB;3571.10 EXHAUST GAS SYSTEM MBR"
1.12.7.3.4,56117,"3551.10 AIR INTAKE SYSTEM MBL",5121,"HK1003-Rev.0E-3",WBS,"56097",,,,100,Complete,,,,,,,,,0,,0,,0,,0,,,,"HK1003 -Blackpoint D2 - Rev.0E DD30092021;PR;3000 TURBOSET GAS TURBINE 12;3521 GAS TURBINE 12 AUXILIARY SYSTEMS MB"
1.12.7.3.4.1,56119,"3551.10.10 AIR INTAKE SYSTEM 12MBL",5121,"HK1003-Rev.0E-3",WBS,"56117",,,,,NotStart,,,,,,,,,,,,,,,,,,,"HK1003 -Blackpoint D2 - Rev.0E DD30092021;PR;3000 TURBOSET GAS TURBINE 12;3521 GAS TURBINE 12 AUXILIARY SYSTEMS MB;3551.10 AIR INTAKE SYSTEM MBL"
1.12.7.3.4.2,56118,"3551.10.05 AIR INTAKE / EXHAUST SOFTWARE SUBMITTAL",5121,"HK1003-Rev.0E-3",WBS,"56117",,,,,NotStart,,,,,,,,,,,,,,,,,,,"HK1003 -Blackpoint D2 - Rev.0E DD30092021;PR;3000 TURBOSET GAS TURBINE 12;3521 GAS TURBINE 12 AUXILIARY SYSTEMS MB;3551.10 AIR INTAKE SYSTEM MBL"
1.12.7.3.5,56114,"3531.10 FIN FAN COOLER MBV FOR LUBE OIL (OPTION)",5121,"HK1003-Rev.0E-3",WBS,"56097",,,,100,Complete,,,,,,,,,0,,0,,0,,0,,,,"HK1003 -Blackpoint D2 - Rev.0E DD30092021;PR;3000 TURBOSET GAS TURBINE 12;3521 GAS TURBINE 12 AUXILIARY SYSTEMS MB"
1.12.7.3.5.1,56116,"3531.10.10 FIN FAN COOLERS 12MBV FOR LUBE OIL (OPTION)",5121,"HK1003-Rev.0E-3",WBS,"56114",,,,,NotStart,,,,,,,,,,,,,,,,,,,"HK1003 -Blackpoint D2 - Rev.0E DD30092021;PR;3000 TURBOSET GAS TURBINE 12;3521 GAS TURBINE 12 AUXILIARY SYSTEMS MB;3531.10 FIN FAN COOLER MBV FOR LUBE OIL (OPTION)"
1.12.7.3.5.2,56115,"3531.10.05 FIN FAN COOLERS MBV SOFTWARE SUBMITTAL FOR LUBE OIL (OPTION)",5121,"HK1003-Rev.0E-3",WBS,"56114",,,,,NotStart,,,,,,,,,,,,,,,,,,,"HK1003 -Blackpoint D2 - Rev.0E DD30092021;PR;3000 TURBOSET GAS TURBINE 12;3521 GAS TURBINE 12 AUXILIARY SYSTEMS MB;3531.10 FIN FAN COOLER MBV FOR LUBE OIL (OPTION)"
1.12.7.3.6,56113,"3521.55 INTERCONNECTING PIPING ECONOPAC MB-",5121,"HK1003-Rev.0E-3",WBS,"56097",,,,,NotStart,,,,,,,,,,,,,,,,,,,"HK1003 -Blackpoint D2 - Rev.0E DD30092021;PR;3000 TURBOSET GAS TURBINE 12;3521 GAS TURBINE 12 AUXILIARY SYSTEMS MB"
1.12.7.3.7,56109,"3521.40 GT AUXILIARIES LUBE OIL",5121,"HK1003-Rev.0E-3",WBS,"56097",,,,100,Complete,,,,,,,,,0,,0,,0,,0,,,,"HK1003 -Blackpoint D2 - Rev.0E DD30092021;PR;3000 TURBOSET GAS TURBINE 12;3521 GAS TURBINE 12 AUXILIARY SYSTEMS MB"
1.12.7.3.7.1,56112,"3521.40.12 GT AUXILIARIES HYDRAULIC OIL MBX",5121,"HK1003-Rev.0E-3",WBS,"56109",,,,,NotStart,,,,,,,,,,,,,,,,,,,"HK1003 -Blackpoint D2 - Rev.0E DD30092021;PR;3000 TURBOSET GAS TURBINE 12;3521 GAS TURBINE 12 AUXILIARY SYSTEMS MB;3521.40 GT AUXILIARIES LUBE OIL"
1.12.7.3.7.2,56111,"3521.40.10 GT AUXILIARIES LUBE OIL FOR OIL FLUSHING MBV",5121,"HK1003-Rev.0E-3",WBS,"56109",,,,,NotStart,,,,,,,,,,,,,,,,,,,"HK1003 -Blackpoint D2 - Rev.0E DD30092021;PR;3000 TURBOSET GAS TURBINE 12;3521 GAS TURBINE 12 AUXILIARY SYSTEMS MB;3521.40 GT AUXILIARIES LUBE OIL"
1.12.7.3.7.3,56110,"3521.40.05 GT AUXILIARIES LUBE OIL TANK/COOLER",5121,"HK1003-Rev.0E-3",WBS,"56109",,,,,NotStart,,,,,,,,,,,,,,,,,,,"HK1003 -Blackpoint D2 - Rev.0E DD30092021;PR;3000 TURBOSET GAS TURBINE 12;3521 GAS TURBINE 12 AUXILIARY SYSTEMS MB;3521.40 GT AUXILIARIES LUBE OIL"
1.12.7.3.8,56108,"3521.35 GT AUXILIARIES TURNING DEVICE MBK",5121,"HK1003-Rev.0E-3",WBS,"56097",,,,,NotStart,,,,,,,,,,,,,,,,,,,"HK1003 -Blackpoint D2 - Rev.0E DD30092021;PR;3000 TURBOSET GAS TURBINE 12;3521 GAS TURBINE 12 AUXILIARY SYSTEMS MB"
1.12.7.3.9,56107,"3521.30 GT AUXILIARIES COMBUSTION CHAMBER RACK MBM",5121,"HK1003-Rev.0E-3",WBS,"56097",,,,,NotStart,,,,,,,,,,,,,,,,,,,"HK1003 -Blackpoint D2 - Rev.0E DD30092021;PR;3000 TURBOSET GAS TURBINE 12;3521 GAS TURBINE 12 AUXILIARY SYSTEMS MB"
1.12.7.3.10,56106,"3521.25 GT AUXILIARIES HCO UNIT MBA",5121,"HK1003-Rev.0E-3",WBS,"56097",,,,,NotStart,,,,,,,,,,,,,,,,,,,"HK1003 -Blackpoint D2 - Rev.0E DD30092021;PR;3000 TURBOSET GAS TURBINE 12;3521 GAS TURBINE 12 AUXILIARY SYSTEMS MB"
1.12.7.3.11,56105,"3521.22 GT AUXILIARIES PURGE WATER SKID MBN",5121,"HK1003-Rev.0E-3",WBS,"56097",,,,,NotStart,,,,,,,,,,,,,,,,,,,"HK1003 -Blackpoint D2 - Rev.0E DD30092021;PR;3000 TURBOSET GAS TURBINE 12;3521 GAS TURBINE 12 AUXILIARY SYSTEMS MB"
1.12.7.3.12,56104,"3521.20 GT AUXILIARIES FUEL OIL PACKAGE MBN",5121,"HK1003-Rev.0E-3",WBS,"56097",,,,,NotStart,,,,,,,,,,,,,,,,,,,"HK1003 -Blackpoint D2 - Rev.0E DD30092021;PR;3000 TURBOSET GAS TURBINE 12;3521 GAS TURBINE 12 AUXILIARY SYSTEMS MB"
1.12.7.3.13,56103,"3521.15 GT AUXILIARIES FUEL GAS PACKAGE MBP",5121,"HK1003-Rev.0E-3",WBS,"56097",,,,,NotStart,,,,,,,,,,,,,,,,,,,"HK1003 -Blackpoint D2 - Rev.0E DD30092021;PR;3000 TURBOSET GAS TURBINE 12;3521 GAS TURBINE 12 AUXILIARY SYSTEMS MB"
1.12.7.3.14,56102,"3521.10 GT AUXILIARIES NOx WATER PACKAGE MBU",5121,"HK1003-Rev.0E-3",WBS,"56097",,,,,NotStart,,,,,,,,,,,,,,,,,,,"HK1003 -Blackpoint D2 - Rev.0E DD30092021;PR;3000 TURBOSET GAS TURBINE 12;3521 GAS TURBINE 12 AUXILIARY SYSTEMS MB"
1.12.7.3.15,56101,"3521.07 GT AUXILIARIES HYDRAULIC PACKAGE MBX",5121,"HK1003-Rev.0E-3",WBS,"56097",,,,,NotStart,,,,,,,,,,,,,,,,,,,"HK1003 -Blackpoint D2 - Rev.0E DD30092021;PR;3000 TURBOSET GAS TURBINE 12;3521 GAS TURBINE 12 AUXILIARY SYSTEMS MB"
1.12.7.3.16,56100,"3521.05 GT AUXILIARIES PNEUMATIC PACKAGE MBX",5121,"HK1003-Rev.0E-3",WBS,"56097",,,,,NotStart,,,,,,,,,,,,,,,,,,,"HK1003 -Blackpoint D2 - Rev.0E DD30092021;PR;3000 TURBOSET GAS TURBINE 12;3521 GAS TURBINE 12 AUXILIARY SYSTEMS MB"
1.12.7.3.17,56099,"3521.04 GT AUXILIARIES DUAL FUEL MODULE MB-",5121,"HK1003-Rev.0E-3",WBS,"56097",,,,,NotStart,,,,,,,,,,,,,,,,,,,"HK1003 -Blackpoint D2 - Rev.0E DD30092021;PR;3000 TURBOSET GAS TURBINE 12;3521 GAS TURBINE 12 AUXILIARY SYSTEMS MB"
1.12.7.3.18,56098,"3521.02 GT AUXILIARIES BASE MODULE MB-",5121,"HK1003-Rev.0E-3",WBS,"56097",,,,,NotStart,,,,,,,,,,,,,,,,,,,"HK1003 -Blackpoint D2 - Rev.0E DD30092021;PR;3000 TURBOSET GAS TURBINE 12;3521 GAS TURBINE 12 AUXILIARY SYSTEMS MB"
1.12.7.4,56087,"3500 TURBINE PACKAGE - GAS TURBINE 12",5121,"HK1003-Rev.0E-3",WBS,"56086",,,,100,Complete,,,,,,,,,0,,0,,0,,0,,,,"HK1003 -Blackpoint D2 - Rev.0E DD30092021;PR;3000 TURBOSET GAS TURBINE 12"
1.12.7.4.1,56088,"3500.05 GAS TURBINE, GENERAL MB-",5121,"HK1003-Rev.0E-3",WBS,"56087",,,,100,Complete,,,,,,,,,0,,0,,0,,0,,,,"HK1003 -Blackpoint D2 - Rev.0E DD30092021;PR;3000 TURBOSET GAS TURBINE 12;3500 TURBINE PACKAGE - GAS TURBINE 12"
1.12.7.4.1.1,56096,"3500.05.24 GAS TURBINE FUEL OIL & NOx VALVES MB-",5121,"HK1003-Rev.0E-3",WBS,"56088",,,,,NotStart,,,,,,,,,,,,,,,,,,,"HK1003 -Blackpoint D2 - Rev.0E DD30092021;PR;3000 TURBOSET GAS TURBINE 12;3500 TURBINE PACKAGE - GAS TURBINE 12;3500.05 GAS TURBINE, GENERAL MB-"
1.12.7.4.1.2,56095,"3500.05.23 GAS TURBINE FUEL GAS VALVES MB- & CONTROL BLOCK",5121,"HK1003-Rev.0E-3",WBS,"56088",,,,,NotStart,,,,,,,,,,,,,,,,,,,"HK1003 -Blackpoint D2 - Rev.0E DD30092021;PR;3000 TURBOSET GAS TURBINE 12;3500 TURBINE PACKAGE - GAS TURBINE 12;3500.05 GAS TURBINE, GENERAL MB-"
1.12.7.4.1.3,56094,"3500.05.20 GAS TURBINE INSULATION MB-",5121,"HK1003-Rev.0E-3",WBS,"56088",,,,,NotStart,,,,,,,,,,,,,,,,,,,"HK1003 -Blackpoint D2 - Rev.0E DD30092021;PR;3000 TURBOSET GAS TURBINE 12;3500 TURBINE PACKAGE - GAS TURBINE 12;3500.05 GAS TURBINE, GENERAL MB-"
1.12.7.4.1.4,56093,"3500.05.17 GAS TURBINE EMBEDDED PARTS MB-",5121,"HK1003-Rev.0E-3",WBS,"56088",,,,,NotStart,,,,,,,,,,,,,,,,,,,"HK1003 -Blackpoint D2 - Rev.0E DD30092021;PR;3000 TURBOSET GAS TURBINE 12;3500 TURBINE PACKAGE - GAS TURBINE 12;3500.05 GAS TURBINE, GENERAL MB-"
1.12.7.4.1.5,56092,"3500.05.15 GAS TURBINE PARTS MB-",5121,"HK1003-Rev.0E-3",WBS,"56088",,,,,NotStart,,,,,,,,,,,,,,,,,,,"HK1003 -Blackpoint D2 - Rev.0E DD30092021;PR;3000 TURBOSET GAS TURBINE 12;3500 TURBINE PACKAGE - GAS TURBINE 12;3500.05 GAS TURBINE, GENERAL MB-"
1.12.7.4.1.6,56091,"3500.05.10 GAS TURBINE MB-",5121,"HK1003-Rev.0E-3",WBS,"56088",,,,,NotStart,,,,,,,,,,,,,,,,,,,"HK1003 -Blackpoint D2 - Rev.0E DD30092021;PR;3000 TURBOSET GAS TURBINE 12;3500 TURBINE PACKAGE - GAS TURBINE 12;3500.05 GAS TURBINE, GENERAL MB-"
1.12.7.4.1.7,56090,"3500.05.07 GT AUXILIARIES ENGINEERING TRANSMITTAL SCHEDULE (AAP)  MB-",5121,"HK1003-Rev.0E-3",WBS,"56088",,,,,NotStart,,,,,,,,,,,,,,,,,,,"HK1003 -Blackpoint D2 - Rev.0E DD30092021;PR;3000 TURBOSET GAS TURBINE 12;3500 TURBINE PACKAGE - GAS TURBINE 12;3500.05 GAS TURBINE, GENERAL MB-"
1.12.7.4.1.8,56089,"3500.05.05 GAS TURBINE ENGINEERING TRANSMITTAL SCHEDULE MB-",5121,"HK1003-Rev.0E-3",WBS,"56088",,,,,NotStart,,,,,,,,,,,,,,,,,,,"HK1003 -Blackpoint D2 - Rev.0E DD30092021;PR;3000 TURBOSET GAS TURBINE 12;3500 TURBINE PACKAGE - GAS TURBINE 12;3500.05 GAS TURBINE, GENERAL MB-"
1.12.8,56027,"3000 TURBOSET GAS TURBINE 11",5121,"HK1003-Rev.0E-3",WBS,"55934",,,,100,Complete,,,,,,,,,0,,0,,0,,0,,,,"HK1003 -Blackpoint D2 - Rev.0E DD30092021;PR"
1.12.8.1,56079,"3621 GENERATOR AUXILIARY SYSTEMS FOR GT 11 MK",5121,"HK1003-Rev.0E-3",WBS,"56027",,,,100,Complete,,,,,,,,,0,,0,,0,,0,,,,"HK1003 -Blackpoint D2 - Rev.0E DD30092021;PR;3000 TURBOSET GAS TURBINE 11"
1.12.8.1.1,56085,"3621.35 SEAL OIL SYSTEM MKW",5121,"HK1003-Rev.0E-3",WBS,"56079",,,,,NotStart,,,,,,,,,,,,,,,,,,,"HK1003 -Blackpoint D2 - Rev.0E DD30092021;PR;3000 TURBOSET GAS TURBINE 11;3621 GENERATOR AUXILIARY SYSTEMS FOR GT 11 MK"
1.12.8.1.2,56084,"3621.30 GAS SYSTEM MKG",5121,"HK1003-Rev.0E-3",WBS,"56079",,,,,NotStart,,,,,,,,,,,,,,,,,,,"HK1003 -Blackpoint D2 - Rev.0E DD30092021;PR;3000 TURBOSET GAS TURBINE 11;3621 GENERATOR AUXILIARY SYSTEMS FOR GT 11 MK"
1.12.8.1.3,56083,"3621.25 ENCLOSURE FOR GT GENERATOR",5121,"HK1003-Rev.0E-3",WBS,"56079",,,,,NotStart,,,,,,,,,,,,,,,,,,,"HK1003 -Blackpoint D2 - Rev.0E DD30092021;PR;3000 TURBOSET GAS TURBINE 11;3621 GENERATOR AUXILIARY SYSTEMS FOR GT 11 MK"
1.12.8.1.4,56080,"3531.20  FIN FAN MPR FOR GT GENERATOR MKA (OPTION)",5121,"HK1003-Rev.0E-3",WBS,"56079",,,,100,Complete,,,,,,,,,0,,0,,0,,0,,,,"HK1003 -Blackpoint D2 - Rev.0E DD30092021;PR;3000 TURBOSET GAS TURBINE 11;3621 GENERATOR AUXILIARY SYSTEMS FOR GT 11 MK"
1.12.8.1.4.1,56082,"3531.20.10 FIN FAN MPR FOR GT GENERATOR MKA (OPTION)",5121,"HK1003-Rev.0E-3",WBS,"56080",,,,,NotStart,,,,,,,,,,,,,,,,,,,"HK1003 -Blackpoint D2 - Rev.0E DD30092021;PR;3000 TURBOSET GAS TURBINE 11;3621 GENERATOR AUXILIARY SYSTEMS FOR GT 11 MK;3531.20  FIN FAN MPR FOR GT GENERATOR MKA (OPTION)"
1.12.8.1.4.2,56081,"3531.20.05 FIN FAN MPR SOFTWARE SUBMITTAL FOR GT GENERATOR MKA (OPTION)",5121,"HK1003-Rev.0E-3",WBS,"56080",,,,,NotStart,,,,,,,,,,,,,,,,,,,"HK1003 -Blackpoint D2 - Rev.0E DD30092021;PR;3000 TURBOSET GAS TURBINE 11;3621 GENERATOR AUXILIARY SYSTEMS FOR GT 11 MK;3531.20  FIN FAN MPR FOR GT GENERATOR MKA (OPTION)"
1.12.8.2,56073,"3600 TURBINE PACKAGE - GENERATOR FOR GAS TURBINE 11 MK",5121,"HK1003-Rev.0E-3",WBS,"56027",,,,100,Complete,,,,,,,,,0,,0,,0,,0,,,,"HK1003 -Blackpoint D2 - Rev.0E DD30092021;PR;3000 TURBOSET GAS TURBINE 11"
1.12.8.2.1,56078,"3600.17 GT GENERATOR EMBEDDED PARTS MK-",5121,"HK1003-Rev.0E-3",WBS,"56073",,,,,NotStart,,,,,,,,,,,,,,,,,,,"HK1003 -Blackpoint D2 - Rev.0E DD30092021;PR;3000 TURBOSET GAS TURBINE 11;3600 TURBINE PACKAGE - GENERATOR FOR GAS TURBINE 11 MK"
1.12.8.2.2,56077,"3600.12 GENERATOR ENCLOSURE 11MKA FOR GT11",5121,"HK1003-Rev.0E-3",WBS,"56073",,,,,NotStart,,,,,,,,,,,,,,,,,,,"HK1003 -Blackpoint D2 - Rev.0E DD30092021;PR;3000 TURBOSET GAS TURBINE 11;3600 TURBINE PACKAGE - GENERATOR FOR GAS TURBINE 11 MK"
1.12.8.2.3,56076,"3600.11 GENERATOR COOLER 11MKA70 FOR GT11",5121,"HK1003-Rev.0E-3",WBS,"56073",,,,,NotStart,,,,,,,,,,,,,,,,,,,"HK1003 -Blackpoint D2 - Rev.0E DD30092021;PR;3000 TURBOSET GAS TURBINE 11;3600 TURBINE PACKAGE - GENERATOR FOR GAS TURBINE 11 MK"
1.12.8.2.4,56075,"3600.10 GENERATOR FOR GT 11MKA INCL. COOLER 11MKA70",5121,"HK1003-Rev.0E-3",WBS,"56073",,,,,NotStart,,,,,,,,,,,,,,,,,,,"HK1003 -Blackpoint D2 - Rev.0E DD30092021;PR;3000 TURBOSET GAS TURBINE 11;3600 TURBINE PACKAGE - GENERATOR FOR GAS TURBINE 11 MK"
1.12.8.2.5,56074,"3600.05 GT GENERATOR 11/12MK ENGINEERING TRANSMITTAL SCHEDULE",5121,"HK1003-Rev.0E-3",WBS,"56073",,,,,NotStart,,,,,,,,,,,,,,,,,,,"HK1003 -Blackpoint D2 - Rev.0E DD30092021;PR;3000 TURBOSET GAS TURBINE 11;3600 TURBINE PACKAGE - GENERATOR FOR GAS TURBINE 11 MK"
1.12.8.3,56038,"3521 GAS TURBINE 11 AUXILIARY SYSTEMS MB",5121,"HK1003-Rev.0E-3",WBS,"56027",,,,100,Complete,,,,,,,,,0,,0,,0,,0,,,,"HK1003 -Blackpoint D2 - Rev.0E DD30092021;PR;3000 TURBOSET GAS TURBINE 11"
1.12.8.3.1,56070,"6295.10 GAS TURBINE ENCLOSURE INCL. VENTILATION MPB/SAM",5121,"HK1003-Rev.0E-3",WBS,"56038",,,,100,Complete,,,,,,,,,0,,0,,0,,0,,,,"HK1003 -Blackpoint D2 - Rev.0E DD30092021;PR;3000 TURBOSET GAS TURBINE 11;3521 GAS TURBINE 11 AUXILIARY SYSTEMS MB"
1.12.8.3.1.1,56072,"6295.10.10 GAS TURBINE ENCLOSURE INCL. AUX.SYS. 11MPB",5121,"HK1003-Rev.0E-3",WBS,"56070",,,,,NotStart,,,,,,,,,,,,,,,,,,,"HK1003 -Blackpoint D2 - Rev.0E DD30092021;PR;3000 TURBOSET GAS TURBINE 11;3521 GAS TURBINE 11 AUXILIARY SYSTEMS MB;6295.10 GAS TURBINE ENCLOSURE INCL. VENTILATION MPB/SAM"
1.12.8.3.1.2,56071,"6295.10.05 GAS TURBINE ENCLOSURE SOFTWARE SUBMITTAL",5121,"HK1003-Rev.0E-3",WBS,"56070",,,,,NotStart,,,,,,,,,,,,,,,,,,,"HK1003 -Blackpoint D2 - Rev.0E DD30092021;PR;3000 TURBOSET GAS TURBINE 11;3521 GAS TURBINE 11 AUXILIARY SYSTEMS MB;6295.10 GAS TURBINE ENCLOSURE INCL. VENTILATION MPB/SAM"
1.12.8.3.2,56067,"6295.10 FIRE FIGHTING/GAS DETECTION FOR NOISE ENCLOSURE CYE/CYQ/SGJ",5121,"HK1003-Rev.0E-3",WBS,"56038",,,,100,Complete,,,,,,,,,0,,0,,0,,0,,,,"HK1003 -Blackpoint D2 - Rev.0E DD30092021;PR;3000 TURBOSET GAS TURBINE 11;3521 GAS TURBINE 11 AUXILIARY SYSTEMS MB"
1.12.8.3.2.1,56069,"6295.10.10 FIRE FIGHTING/GAS DETECTION FOR NOISE ENCLOSURE/PCC 11CYE/CYQ/SGJ",5121,"HK1003-Rev.0E-3",WBS,"56067",,,,,NotStart,,,,,,,,,,,,,,,,,,,"HK1003 -Blackpoint D2 - Rev.0E DD30092021;PR;3000 TURBOSET GAS TURBINE 11;3521 GAS TURBINE 11 AUXILIARY SYSTEMS MB;6295.10 FIRE FIGHTING/GAS DETECTION FOR NOISE ENCLOSURE CYE/CYQ/SGJ"
1.12.8.3.2.2,56068,"6295.10.05 FIRE FIGHTING/GAS DETECTION SOFTWARE SUBMITTAL",5121,"HK1003-Rev.0E-3",WBS,"56067",,,,,NotStart,,,,,,,,,,,,,,,,,,,"HK1003 -Blackpoint D2 - Rev.0E DD30092021;PR;3000 TURBOSET GAS TURBINE 11;3521 GAS TURBINE 11 AUXILIARY SYSTEMS MB;6295.10 FIRE FIGHTING/GAS DETECTION FOR NOISE ENCLOSURE CYE/CYQ/SGJ"
1.12.8.3.3,56061,"3571.10 EXHAUST GAS SYSTEM MBR",5121,"HK1003-Rev.0E-3",WBS,"56038",,,,100,Complete,,,,,,,,,0,,0,,0,,0,,,,"HK1003 -Blackpoint D2 - Rev.0E DD30092021;PR;3000 TURBOSET GAS TURBINE 11;3521 GAS TURBINE 11 AUXILIARY SYSTEMS MB"
1.12.8.3.3.1,56066,"3571.30.10 TURBINE EXHAUST MANIFOLD 11MBR",5121,"HK1003-Rev.0E-3",WBS,"56061",,,,,NotStart,,,,,,,,,,,,,,,,,,,"HK1003 -Blackpoint D2 - Rev.0E DD30092021;PR;3000 TURBOSET GAS TURBINE 11;3521 GAS TURBINE 11 AUXILIARY SYSTEMS MB;3571.10 EXHAUST GAS SYSTEM MBR"
1.12.8.3.3.2,56065,"3571.30.05 TURBINE EXHAUST MANIFOLD SOFTWARE SUBMITTAL",5121,"HK1003-Rev.0E-3",WBS,"56061",,,,,NotStart,,,,,,,,,,,,,,,,,,,"HK1003 -Blackpoint D2 - Rev.0E DD30092021;PR;3000 TURBOSET GAS TURBINE 11;3521 GAS TURBINE 11 AUXILIARY SYSTEMS MB;3571.10 EXHAUST GAS SYSTEM MBR"
1.12.8.3.3.3,56064,"3571.20.10 EXHAUST GAS STACK MBR (for GT-PAC only)",5121,"HK1003-Rev.0E-3",WBS,"56061",,,,,NotStart,,,,,,,,,,,,,,,,,,,"HK1003 -Blackpoint D2 - Rev.0E DD30092021;PR;3000 TURBOSET GAS TURBINE 11;3521 GAS TURBINE 11 AUXILIARY SYSTEMS MB;3571.10 EXHAUST GAS SYSTEM MBR"
1.12.8.3.3.4,56063,"3571.10.10 DIFFUSER 11MBR",5121,"HK1003-Rev.0E-3",WBS,"56061",,,,,NotStart,,,,,,,,,,,,,,,,,,,"HK1003 -Blackpoint D2 - Rev.0E DD30092021;PR;3000 TURBOSET GAS TURBINE 11;3521 GAS TURBINE 11 AUXILIARY SYSTEMS MB;3571.10 EXHAUST GAS SYSTEM MBR"
1.12.8.3.3.5,56062,"3571.10.05 DIFFUSER SOFTWARE SUBMITTAL",5121,"HK1003-Rev.0E-3",WBS,"56061",,,,,NotStart,,,,,,,,,,,,,,,,,,,"HK1003 -Blackpoint D2 - Rev.0E DD30092021;PR;3000 TURBOSET GAS TURBINE 11;3521 GAS TURBINE 11 AUXILIARY SYSTEMS MB;3571.10 EXHAUST GAS SYSTEM MBR"
1.12.8.3.4,56058,"3551.10 AIR INTAKE SYSTEM MBL",5121,"HK1003-Rev.0E-3",WBS,"56038",,,,100,Complete,,,,,,,,,0,,0,,0,,0,,,,"HK1003 -Blackpoint D2 - Rev.0E DD30092021;PR;3000 TURBOSET GAS TURBINE 11;3521 GAS TURBINE 11 AUXILIARY SYSTEMS MB"
1.12.8.3.4.1,56060,"3551.10.10 AIR INTAKE SYSTEM 11MBL",5121,"HK1003-Rev.0E-3",WBS,"56058",,,,,NotStart,,,,,,,,,,,,,,,,,,,"HK1003 -Blackpoint D2 - Rev.0E DD30092021;PR;3000 TURBOSET GAS TURBINE 11;3521 GAS TURBINE 11 AUXILIARY SYSTEMS MB;3551.10 AIR INTAKE SYSTEM MBL"
1.12.8.3.4.2,56059,"3551.10.05 AIR INTAKE / EXHAUST SOFTWARE SUBMITTAL",5121,"HK1003-Rev.0E-3",WBS,"56058",,,,,NotStart,,,,,,,,,,,,,,,,,,,"HK1003 -Blackpoint D2 - Rev.0E DD30092021;PR;3000 TURBOSET GAS TURBINE 11;3521 GAS TURBINE 11 AUXILIARY SYSTEMS MB;3551.10 AIR INTAKE SYSTEM MBL"
1.12.8.3.5,56055,"3531.10 FIN FAN COOLER MBV FOR LUBE OIL (OPTION)",5121,"HK1003-Rev.0E-3",WBS,"56038",,,,100,Complete,,,,,,,,,0,,0,,0,,0,,,,"HK1003 -Blackpoint D2 - Rev.0E DD30092021;PR;3000 TURBOSET GAS TURBINE 11;3521 GAS TURBINE 11 AUXILIARY SYSTEMS MB"
1.12.8.3.5.1,56057,"3531.10.10 FIN FAN COOLER MBV FOR LUBE OIL (OPTION)",5121,"HK1003-Rev.0E-3",WBS,"56055",,,,,NotStart,,,,,,,,,,,,,,,,,,,"HK1003 -Blackpoint D2 - Rev.0E DD30092021;PR;3000 TURBOSET GAS TURBINE 11;3521 GAS TURBINE 11 AUXILIARY SYSTEMS MB;3531.10 FIN FAN COOLER MBV FOR LUBE OIL (OPTION)"
1.12.8.3.5.2,56056,"3531.10.05 FIN FAN COOLER MBV SOFTWARE SUBMITTAL FOR LUBE OIL  (OPTION)",5121,"HK1003-Rev.0E-3",WBS,"56055",,,,,NotStart,,,,,,,,,,,,,,,,,,,"HK1003 -Blackpoint D2 - Rev.0E DD30092021;PR;3000 TURBOSET GAS TURBINE 11;3521 GAS TURBINE 11 AUXILIARY SYSTEMS MB;3531.10 FIN FAN COOLER MBV FOR LUBE OIL (OPTION)"
1.12.8.3.6,56054,"3521.55 INTERCONNECTING PIPING ECONOPAC MB-",5121,"HK1003-Rev.0E-3",WBS,"56038",,,,,NotStart,,,,,,,,,,,,,,,,,,,"HK1003 -Blackpoint D2 - Rev.0E DD30092021;PR;3000 TURBOSET GAS TURBINE 11;3521 GAS TURBINE 11 AUXILIARY SYSTEMS MB"
1.12.8.3.7,56050,"3521.40 GT AUXILIARIES LUBE OIL",5121,"HK1003-Rev.0E-3",WBS,"56038",,,,100,Complete,,,,,,,,,0,,0,,0,,0,,,,"HK1003 -Blackpoint D2 - Rev.0E DD30092021;PR;3000 TURBOSET GAS TURBINE 11;3521 GAS TURBINE 11 AUXILIARY SYSTEMS MB"
1.12.8.3.7.1,56053,"3521.40.12 GT AUXILIARIES HYDRAULIC OIL MBX",5121,"HK1003-Rev.0E-3",WBS,"56050",,,,,NotStart,,,,,,,,,,,,,,,,,,,"HK1003 -Blackpoint D2 - Rev.0E DD30092021;PR;3000 TURBOSET GAS TURBINE 11;3521 GAS TURBINE 11 AUXILIARY SYSTEMS MB;3521.40 GT AUXILIARIES LUBE OIL"
1.12.8.3.7.2,56052,"3521.40.10 GT AUXILIARIES LUBE OIL FOR OIL FLUSHING MBV",5121,"HK1003-Rev.0E-3",WBS,"56050",,,,,NotStart,,,,,,,,,,,,,,,,,,,"HK1003 -Blackpoint D2 - Rev.0E DD30092021;PR;3000 TURBOSET GAS TURBINE 11;3521 GAS TURBINE 11 AUXILIARY SYSTEMS MB;3521.40 GT AUXILIARIES LUBE OIL"
1.12.8.3.7.3,56051,"3521.40.05 GT AUXILIARIES LUBE OIL TANK/COOLER",5121,"HK1003-Rev.0E-3",WBS,"56050",,,,,NotStart,,,,,,,,,,,,,,,,,,,"HK1003 -Blackpoint D2 - Rev.0E DD30092021;PR;3000 TURBOSET GAS TURBINE 11;3521 GAS TURBINE 11 AUXILIARY SYSTEMS MB;3521.40 GT AUXILIARIES LUBE OIL"
1.12.8.3.8,56049,"3521.35 GT AUXILIARIES TURNING DEVICE MBK",5121,"HK1003-Rev.0E-3",WBS,"56038",,,,,NotStart,,,,,,,,,,,,,,,,,,,"HK1003 -Blackpoint D2 - Rev.0E DD30092021;PR;3000 TURBOSET GAS TURBINE 11;3521 GAS TURBINE 11 AUXILIARY SYSTEMS MB"
1.12.8.3.9,56048,"3521.30 GT AUXILIARIES COMBUSTION CHAMBER RACK MBM",5121,"HK1003-Rev.0E-3",WBS,"56038",,,,,NotStart,,,,,,,,,,,,,,,,,,,"HK1003 -Blackpoint D2 - Rev.0E DD30092021;PR;3000 TURBOSET GAS TURBINE 11;3521 GAS TURBINE 11 AUXILIARY SYSTEMS MB"
1.12.8.3.10,56047,"3521.25 GT AUXILIARIES HCO UNIT MBA",5121,"HK1003-Rev.0E-3",WBS,"56038",,,,,NotStart,,,,,,,,,,,,,,,,,,,"HK1003 -Blackpoint D2 - Rev.0E DD30092021;PR;3000 TURBOSET GAS TURBINE 11;3521 GAS TURBINE 11 AUXILIARY SYSTEMS MB"
1.12.8.3.11,56046,"3521.22 GT AUXILIARIES PURGE WATER SKID MBN",5121,"HK1003-Rev.0E-3",WBS,"56038",,,,,NotStart,,,,,,,,,,,,,,,,,,,"HK1003 -Blackpoint D2 - Rev.0E DD30092021;PR;3000 TURBOSET GAS TURBINE 11;3521 GAS TURBINE 11 AUXILIARY SYSTEMS MB"
1.12.8.3.12,56045,"3521.20 GT AUXILIARIES FUEL OIL PACKAGE MBN",5121,"HK1003-Rev.0E-3",WBS,"56038",,,,,NotStart,,,,,,,,,,,,,,,,,,,"HK1003 -Blackpoint D2 - Rev.0E DD30092021;PR;3000 TURBOSET GAS TURBINE 11;3521 GAS TURBINE 11 AUXILIARY SYSTEMS MB"
1.12.8.3.13,56044,"3521.15 GT AUXILIARIES FUEL GAS PACKAGE MBP",5121,"HK1003-Rev.0E-3",WBS,"56038",,,,,NotStart,,,,,,,,,,,,,,,,,,,"HK1003 -Blackpoint D2 - Rev.0E DD30092021;PR;3000 TURBOSET GAS TURBINE 11;3521 GAS TURBINE 11 AUXILIARY SYSTEMS MB"
1.12.8.3.14,56043,"3521.10 GT AUXILIARIES NOx WATER PACKAGE MBU",5121,"HK1003-Rev.0E-3",WBS,"56038",,,,,NotStart,,,,,,,,,,,,,,,,,,,"HK1003 -Blackpoint D2 - Rev.0E DD30092021;PR;3000 TURBOSET GAS TURBINE 11;3521 GAS TURBINE 11 AUXILIARY SYSTEMS MB"
1.12.8.3.15,56042,"3521.07 GT AUXILIARIES HYDRAULIC PACKAGE MBX",5121,"HK1003-Rev.0E-3",WBS,"56038",,,,,NotStart,,,,,,,,,,,,,,,,,,,"HK1003 -Blackpoint D2 - Rev.0E DD30092021;PR;3000 TURBOSET GAS TURBINE 11;3521 GAS TURBINE 11 AUXILIARY SYSTEMS MB"
1.12.8.3.16,56041,"3521.05 GT AUXILIARIES PNEUMATIC PACKAGE MBX",5121,"HK1003-Rev.0E-3",WBS,"56038",,,,,NotStart,,,,,,,,,,,,,,,,,,,"HK1003 -Blackpoint D2 - Rev.0E DD30092021;PR;3000 TURBOSET GAS TURBINE 11;3521 GAS TURBINE 11 AUXILIARY SYSTEMS MB"
1.12.8.3.17,56040,"3521.04 GT AUXILIARIES DUAL FUEL MODULE MB-",5121,"HK1003-Rev.0E-3",WBS,"56038",,,,,NotStart,,,,,,,,,,,,,,,,,,,"HK1003 -Blackpoint D2 - Rev.0E DD30092021;PR;3000 TURBOSET GAS TURBINE 11;3521 GAS TURBINE 11 AUXILIARY SYSTEMS MB"
1.12.8.3.18,56039,"3521.02 GT AUXILIARIES BASE MODULE MB-",5121,"HK1003-Rev.0E-3",WBS,"56038",,,,,NotStart,,,,,,,,,,,,,,,,,,,"HK1003 -Blackpoint D2 - Rev.0E DD30092021;PR;3000 TURBOSET GAS TURBINE 11;3521 GAS TURBINE 11 AUXILIARY SYSTEMS MB"
1.12.8.4,56028,"3500 TURBINE PACKAGE - GAS TURBINE 11",5121,"HK1003-Rev.0E-3",WBS,"56027",,,,100,Complete,,,,,,,,,0,,0,,0,,0,,,,"HK1003 -Blackpoint D2 - Rev.0E DD30092021;PR;3000 TURBOSET GAS TURBINE 11"
1.12.8.4.1,56029,"3500.05 GAS TURBINE, GENERAL MB-",5121,"HK1003-Rev.0E-3",WBS,"56028",,,,100,Complete,,,,,,,,,0,,0,,0,,0,,,,"HK1003 -Blackpoint D2 - Rev.0E DD30092021;PR;3000 TURBOSET GAS TURBINE 11;3500 TURBINE PACKAGE - GAS TURBINE 11"
1.12.8.4.1.1,56037,"3500.05.24 GAS TURBINE FUEL OIL & NOx VALVES MB-",5121,"HK1003-Rev.0E-3",WBS,"56029",,,,,NotStart,,,,,,,,,,,,,,,,,,,"HK1003 -Blackpoint D2 - Rev.0E DD30092021;PR;3000 TURBOSET GAS TURBINE 11;3500 TURBINE PACKAGE - GAS TURBINE 11;3500.05 GAS TURBINE, GENERAL MB-"
1.12.8.4.1.2,56036,"3500.05.23 GAS TURBINE FUEL GAS VALVES MB- & CONTROL BLOCK",5121,"HK1003-Rev.0E-3",WBS,"56029",,,,,NotStart,,,,,,,,,,,,,,,,,,,"HK1003 -Blackpoint D2 - Rev.0E DD30092021;PR;3000 TURBOSET GAS TURBINE 11;3500 TURBINE PACKAGE - GAS TURBINE 11;3500.05 GAS TURBINE, GENERAL MB-"
1.12.8.4.1.3,56035,"3500.05.20 GAS TURBINE INSULATION MB-",5121,"HK1003-Rev.0E-3",WBS,"56029",,,,,NotStart,,,,,,,,,,,,,,,,,,,"HK1003 -Blackpoint D2 - Rev.0E DD30092021;PR;3000 TURBOSET GAS TURBINE 11;3500 TURBINE PACKAGE - GAS TURBINE 11;3500.05 GAS TURBINE, GENERAL MB-"
1.12.8.4.1.4,56034,"3500.05.17 GAS TURBINE EMBEDDED PARTS MB-",5121,"HK1003-Rev.0E-3",WBS,"56029",,,,,NotStart,,,,,,,,,,,,,,,,,,,"HK1003 -Blackpoint D2 - Rev.0E DD30092021;PR;3000 TURBOSET GAS TURBINE 11;3500 TURBINE PACKAGE - GAS TURBINE 11;3500.05 GAS TURBINE, GENERAL MB-"
1.12.8.4.1.5,56033,"3500.05.15 GAS TURBINE PARTS MB-",5121,"HK1003-Rev.0E-3",WBS,"56029",,,,,NotStart,,,,,,,,,,,,,,,,,,,"HK1003 -Blackpoint D2 - Rev.0E DD30092021;PR;3000 TURBOSET GAS TURBINE 11;3500 TURBINE PACKAGE - GAS TURBINE 11;3500.05 GAS TURBINE, GENERAL MB-"
1.12.8.4.1.6,56032,"3500.05.10 GAS TURBINE MB-",5121,"HK1003-Rev.0E-3",WBS,"56029",,,,,NotStart,,,,,,,,,,,,,,,,,,,"HK1003 -Blackpoint D2 - Rev.0E DD30092021;PR;3000 TURBOSET GAS TURBINE 11;3500 TURBINE PACKAGE - GAS TURBINE 11;3500.05 GAS TURBINE, GENERAL MB-"
1.12.8.4.1.7,56031,"3500.05.07 GAS TURBINE & GT AUXILIARIES ENGINEERING TRANSMITTAL SCHEDULE (AAP)  MB-",5121,"HK1003-Rev.0E-3",WBS,"56029",,,,,NotStart,,,,,,,,,,,,,,,,,,,"HK1003 -Blackpoint D2 - Rev.0E DD30092021;PR;3000 TURBOSET GAS TURBINE 11;3500 TURBINE PACKAGE - GAS TURBINE 11;3500.05 GAS TURBINE, GENERAL MB-"
1.12.8.4.1.8,56030,"3500.05.05 GAS TURBINE ENGINEERING TRANSMITTAL SCHEDULE MB-",5121,"HK1003-Rev.0E-3",WBS,"56029",,,,,NotStart,,,,,,,,,,,,,,,,,,,"HK1003 -Blackpoint D2 - Rev.0E DD30092021;PR;3000 TURBOSET GAS TURBINE 11;3500 TURBINE PACKAGE - GAS TURBINE 11;3500.05 GAS TURBINE, GENERAL MB-"
1.12.9,55992,"3000 TURBOSET STEAM TURBINE",5121,"HK1003-Rev.0E-3",WBS,"55934",,,,100,Complete,,,,,,,,,0,,0,,0,,0,,,,"HK1003 -Blackpoint D2 - Rev.0E DD30092021;PR"
1.12.9.1,56024,"3221 ST GENERATOR AUXILIARY SYSTEMS MK",5121,"HK1003-Rev.0E-3",WBS,"55992",,,,100,Complete,,,,,,,,,0,,0,,0,,0,,,,"HK1003 -Blackpoint D2 - Rev.0E DD30092021;PR;3000 TURBOSET STEAM TURBINE"
1.12.9.1.1,56026,"3221.30 SEAL OIL SYSTEM MKW",5121,"HK1003-Rev.0E-3",WBS,"56024",,,,,NotStart,,,,,,,,,,,,,,,,,,,"HK1003 -Blackpoint D2 - Rev.0E DD30092021;PR;3000 TURBOSET STEAM TURBINE;3221 ST GENERATOR AUXILIARY SYSTEMS MK"
1.12.9.1.2,56025,"3221.25 GAS SYSTEM MKG",5121,"HK1003-Rev.0E-3",WBS,"56024",,,,,NotStart,,,,,,,,,,,,,,,,,,,"HK1003 -Blackpoint D2 - Rev.0E DD30092021;PR;3000 TURBOSET STEAM TURBINE;3221 ST GENERATOR AUXILIARY SYSTEMS MK"
1.12.9.2,56017,"3200 TURBINE PACKAGE - GENERATOR FOR STEAM TURBINE  MK",5121,"HK1003-Rev.0E-3",WBS,"55992",,,,100,Complete,,,,,,,,,0,,0,,0,,0,,,,"HK1003 -Blackpoint D2 - Rev.0E DD30092021;PR;3000 TURBOSET STEAM TURBINE"
1.12.9.2.1,56023,"3200.17 ST GENERATOR EMBEDDED PARTS MK-",5121,"HK1003-Rev.0E-3",WBS,"56017",,,,,NotStart,,,,,,,,,,,,,,,,,,,"HK1003 -Blackpoint D2 - Rev.0E DD30092021;PR;3000 TURBOSET STEAM TURBINE;3200 TURBINE PACKAGE - GENERATOR FOR STEAM TURBINE  MK"
1.12.9.2.2,56022,"3200.12 GENERATOR ENCLOSURE 10MKA FOR ST",5121,"HK1003-Rev.0E-3",WBS,"56017",,,,,NotStart,,,,,,,,,,,,,,,,,,,"HK1003 -Blackpoint D2 - Rev.0E DD30092021;PR;3000 TURBOSET STEAM TURBINE;3200 TURBINE PACKAGE - GENERATOR FOR STEAM TURBINE  MK"
1.12.9.2.3,56021,"3200.11 GENERATOR COOLER 10MKA70 FOR ST",5121,"HK1003-Rev.0E-3",WBS,"56017",,,,,NotStart,,,,,,,,,,,,,,,,,,,"HK1003 -Blackpoint D2 - Rev.0E DD30092021;PR;3000 TURBOSET STEAM TURBINE;3200 TURBINE PACKAGE - GENERATOR FOR STEAM TURBINE  MK"
1.12.9.2.4,56020,"3200.10 ST GENERATOR 10MKA",5121,"HK1003-Rev.0E-3",WBS,"56017",,,,,NotStart,,,,,,,,,,,,,,,,,,,"HK1003 -Blackpoint D2 - Rev.0E DD30092021;PR;3000 TURBOSET STEAM TURBINE;3200 TURBINE PACKAGE - GENERATOR FOR STEAM TURBINE  MK"
1.12.9.2.5,56019,"3200.05 ST GENERATOR ENGINEERING TRANSMITTAL SCHEDULE (AAP)",5121,"HK1003-Rev.0E-3",WBS,"56017",,,,,NotStart,,,,,,,,,,,,,,,,,,,"HK1003 -Blackpoint D2 - Rev.0E DD30092021;PR;3000 TURBOSET STEAM TURBINE;3200 TURBINE PACKAGE - GENERATOR FOR STEAM TURBINE  MK"
1.12.9.2.6,56018,"3200.03 ST GENERATOR GENERAL ACTIVITIES",5121,"HK1003-Rev.0E-3",WBS,"56017",,,,,NotStart,,,,,,,,,,,,,,,,,,,"HK1003 -Blackpoint D2 - Rev.0E DD30092021;PR;3000 TURBOSET STEAM TURBINE;3200 TURBINE PACKAGE - GENERATOR FOR STEAM TURBINE  MK"
1.12.9.3,56016,"3170 CONDENSER MAG",5121,"HK1003-Rev.0E-3",WBS,"55992",,,,,NotStart,,,,,,,,,,,,,,,,,,,"HK1003 -Blackpoint D2 - Rev.0E DD30092021;PR;3000 TURBOSET STEAM TURBINE"
1.12.9.4,56002,"3121 STEAM TURBINE AUXILIARY SYSTEMS MA- (SmartFlex TYPE)",5121,"HK1003-Rev.0E-3",WBS,"55992",,,,100,Complete,,,,,,,,,0,,0,,0,,0,,,,"HK1003 -Blackpoint D2 - Rev.0E DD30092021;PR;3000 TURBOSET STEAM TURBINE"
1.12.9.4.1,56013,"6295.10 STEAM TURBINE ENCLOSURE MPB20",5121,"HK1003-Rev.0E-3",WBS,"56002",,,,100,Complete,,,,,,,,,0,,0,,0,,0,,,,"HK1003 -Blackpoint D2 - Rev.0E DD30092021;PR;3000 TURBOSET STEAM TURBINE;3121 STEAM TURBINE AUXILIARY SYSTEMS MA- (SmartFlex TYPE)"
1.12.9.4.1.1,56015,"6295.10 .10 STEAM TURBINE ENCLOSURE MPB20",5121,"HK1003-Rev.0E-3",WBS,"56013",,,,,NotStart,,,,,,,,,,,,,,,,,,,"HK1003 -Blackpoint D2 - Rev.0E DD30092021;PR;3000 TURBOSET STEAM TURBINE;3121 STEAM TURBINE AUXILIARY SYSTEMS MA- (SmartFlex TYPE);6295.10 STEAM TURBINE ENCLOSURE MPB20"
1.12.9.4.1.2,56014,"6295.10 .05 STEAM TURBINE ENCLOSURE SOFTWARE SUBMITTAL",5121,"HK1003-Rev.0E-3",WBS,"56013",,,,,NotStart,,,,,,,,,,,,,,,,,,,"HK1003 -Blackpoint D2 - Rev.0E DD30092021;PR;3000 TURBOSET STEAM TURBINE;3121 STEAM TURBINE AUXILIARY SYSTEMS MA- (SmartFlex TYPE);6295.10 STEAM TURBINE ENCLOSURE MPB20"
1.12.9.4.2,56012,"3121.30 ST AUXILIARIES NOISE PROTECTION SYSTEM  MPB",5121,"HK1003-Rev.0E-3",WBS,"56002",,,,,NotStart,,,,,,,,,,,,,,,,,,,"HK1003 -Blackpoint D2 - Rev.0E DD30092021;PR;3000 TURBOSET STEAM TURBINE;3121 STEAM TURBINE AUXILIARY SYSTEMS MA- (SmartFlex TYPE)"
1.12.9.4.3,56011,"3121.25 ST AUXILIARIES BYPASS MODULE MA-",5121,"HK1003-Rev.0E-3",WBS,"56002",,,,,NotStart,,,,,,,,,,,,,,,,,,,"HK1003 -Blackpoint D2 - Rev.0E DD30092021;PR;3000 TURBOSET STEAM TURBINE;3121 STEAM TURBINE AUXILIARY SYSTEMS MA- (SmartFlex TYPE)"
1.12.9.4.4,56010,"3121.20 ST AUXILIARIES CONTROL OIL, PROTECTION EQUIPMENT MAX (SmartFlex TYPE)",5121,"HK1003-Rev.0E-3",WBS,"56002",,,,,NotStart,,,,,,,,,,,,,,,,,,,"HK1003 -Blackpoint D2 - Rev.0E DD30092021;PR;3000 TURBOSET STEAM TURBINE;3121 STEAM TURBINE AUXILIARY SYSTEMS MA- (SmartFlex TYPE)"
1.12.9.4.5,56009,"3121.15 ST AUXILIARIES SEAL & LEAK STEAM SYSTEM GLAND STEAM CONDENSER MAW (SmartFlex TYPE)",5121,"HK1003-Rev.0E-3",WBS,"56002",,,,,NotStart,,,,,,,,,,,,,,,,,,,"HK1003 -Blackpoint D2 - Rev.0E DD30092021;PR;3000 TURBOSET STEAM TURBINE;3121 STEAM TURBINE AUXILIARY SYSTEMS MA- (SmartFlex TYPE)"
1.12.9.4.6,56005,"3121.10 ST AUXILIARIES OIL COMPONENTS MAV (SmartFlex TYPE)",5121,"HK1003-Rev.0E-3",WBS,"56002",,,,100,Complete,,,,,,,,,0,,0,,0,,0,,,,"HK1003 -Blackpoint D2 - Rev.0E DD30092021;PR;3000 TURBOSET STEAM TURBINE;3121 STEAM TURBINE AUXILIARY SYSTEMS MA- (SmartFlex TYPE)"
1.12.9.4.6.1,56008,"3121.10.12 ST AUXILIARIES HYDRAULIC OIL MAX",5121,"HK1003-Rev.0E-3",WBS,"56005",,,,,NotStart,,,,,,,,,,,,,,,,,,,"HK1003 -Blackpoint D2 - Rev.0E DD30092021;PR;3000 TURBOSET STEAM TURBINE;3121 STEAM TURBINE AUXILIARY SYSTEMS MA- (SmartFlex TYPE);3121.10 ST AUXILIARIES OIL COMPONENTS MAV (SmartFlex TYPE)"
1.12.9.4.6.2,56007,"3121.10.10 ST AUXILIARIES LUBE OIL FOR OIL FLUSHING MAV",5121,"HK1003-Rev.0E-3",WBS,"56005",,,,,NotStart,,,,,,,,,,,,,,,,,,,"HK1003 -Blackpoint D2 - Rev.0E DD30092021;PR;3000 TURBOSET STEAM TURBINE;3121 STEAM TURBINE AUXILIARY SYSTEMS MA- (SmartFlex TYPE);3121.10 ST AUXILIARIES OIL COMPONENTS MAV (SmartFlex TYPE)"
1.12.9.4.6.3,56006,"3121.10.05 ST AUXILIARIES LUBE OIL MODULE MAV",5121,"HK1003-Rev.0E-3",WBS,"56005",,,,,NotStart,,,,,,,,,,,,,,,,,,,"HK1003 -Blackpoint D2 - Rev.0E DD30092021;PR;3000 TURBOSET STEAM TURBINE;3121 STEAM TURBINE AUXILIARY SYSTEMS MA- (SmartFlex TYPE);3121.10 ST AUXILIARIES OIL COMPONENTS MAV (SmartFlex TYPE)"
1.12.9.4.7,56004,"3121.06 ST AUXILIARIES AIR REMOVAL SYSTEM MAJ (SmartFlex TYPE)",5121,"HK1003-Rev.0E-3",WBS,"56002",,,,,NotStart,,,,,,,,,,,,,,,,,,,"HK1003 -Blackpoint D2 - Rev.0E DD30092021;PR;3000 TURBOSET STEAM TURBINE;3121 STEAM TURBINE AUXILIARY SYSTEMS MA- (SmartFlex TYPE)"
1.12.9.4.8,56003,"3121.05 ST AUXILIARIES BEARINGS MAD",5121,"HK1003-Rev.0E-3",WBS,"56002",,,,,NotStart,,,,,,,,,,,,,,,,,,,"HK1003 -Blackpoint D2 - Rev.0E DD30092021;PR;3000 TURBOSET STEAM TURBINE;3121 STEAM TURBINE AUXILIARY SYSTEMS MA- (SmartFlex TYPE)"
1.12.9.5,55993,"3100 TURBINE PACKAGE - STEAM TURBINE MAIN COMPONENTS MA",5121,"HK1003-Rev.0E-3",WBS,"55992",,,,100,Complete,,,,,,,,,0,,0,,0,,0,,,,"HK1003 -Blackpoint D2 - Rev.0E DD30092021;PR;3000 TURBOSET STEAM TURBINE"
1.12.9.5.1,55997,"3100.15 STEAM TURBINE MA-",5121,"HK1003-Rev.0E-3",WBS,"55993",,,,100,Complete,,,,,,,,,0,,0,,0,,0,,,,"HK1003 -Blackpoint D2 - Rev.0E DD30092021;PR;3000 TURBOSET STEAM TURBINE;3100 TURBINE PACKAGE - STEAM TURBINE MAIN COMPONENTS MA"
1.12.9.5.1.1,56001,"3100.15.15 STEAM TURBINE ADDITIONAL PARTS MA-",5121,"HK1003-Rev.0E-3",WBS,"55997",,,,,NotStart,,,,,,,,,,,,,,,,,,,"HK1003 -Blackpoint D2 - Rev.0E DD30092021;PR;3000 TURBOSET STEAM TURBINE;3100 TURBINE PACKAGE - STEAM TURBINE MAIN COMPONENTS MA;3100.15 STEAM TURBINE MA-"
1.12.9.5.1.2,56000,"3100.15.12 STEAM TURBINE EMBEDDED PARTS MA-",5121,"HK1003-Rev.0E-3",WBS,"55997",,,,,NotStart,,,,,,,,,,,,,,,,,,,"HK1003 -Blackpoint D2 - Rev.0E DD30092021;PR;3000 TURBOSET STEAM TURBINE;3100 TURBINE PACKAGE - STEAM TURBINE MAIN COMPONENTS MA;3100.15 STEAM TURBINE MA-"
1.12.9.5.1.3,55999,"3100.15.10 STEAM TURBINE (LP-OUTER CASING)  MA-",5121,"HK1003-Rev.0E-3",WBS,"55997",,,,,NotStart,,,,,,,,,,,,,,,,,,,"HK1003 -Blackpoint D2 - Rev.0E DD30092021;PR;3000 TURBOSET STEAM TURBINE;3100 TURBINE PACKAGE - STEAM TURBINE MAIN COMPONENTS MA;3100.15 STEAM TURBINE MA-"
1.12.9.5.1.4,55998,"3100.15.05 STEAM TURBINE (HI-L-SmartFlex TYPE)  MA-",5121,"HK1003-Rev.0E-3",WBS,"55997",,,,,NotStart,,,,,,,,,,,,,,,,,,,"HK1003 -Blackpoint D2 - Rev.0E DD30092021;PR;3000 TURBOSET STEAM TURBINE;3100 TURBINE PACKAGE - STEAM TURBINE MAIN COMPONENTS MA;3100.15 STEAM TURBINE MA-"
1.12.9.5.2,55994,"3100.05 STEAM TURBINE ENGINEERING MA-",5121,"HK1003-Rev.0E-3",WBS,"55993",,,,100,Complete,,,,,,,,,0,,0,,0,,0,,,,"HK1003 -Blackpoint D2 - Rev.0E DD30092021;PR;3000 TURBOSET STEAM TURBINE;3100 TURBINE PACKAGE - STEAM TURBINE MAIN COMPONENTS MA"
1.12.9.5.2.1,55996,"3100.05.10 STEAM TURBINE SOFTWARE SUBMITTAL SCHEDULE MA-",5121,"HK1003-Rev.0E-3",WBS,"55994",,,,,NotStart,,,,,,,,,,,,,,,,,,,"HK1003 -Blackpoint D2 - Rev.0E DD30092021;PR;3000 TURBOSET STEAM TURBINE;3100 TURBINE PACKAGE - STEAM TURBINE MAIN COMPONENTS MA;3100.05 STEAM TURBINE ENGINEERING MA-"
1.12.9.5.2.2,55995,"3100.05.05 STEAM TURBINE TRANSMITTAL REQUEST SCHEDULE (AAP)",5121,"HK1003-Rev.0E-3",WBS,"55994",,,,,NotStart,,,,,,,,,,,,,,,,,,,"HK1003 -Blackpoint D2 - Rev.0E DD30092021;PR;3000 TURBOSET STEAM TURBINE;3100 TURBINE PACKAGE - STEAM TURBINE MAIN COMPONENTS MA;3100.05 STEAM TURBINE ENGINEERING MA-"
1.12.10,55973,"2000 STEAM GENERATOR / AUXILIARY EQUIPMENT",5121,"HK1003-Rev.0E-3",WBS,"55934",,,,100,Complete,,,,,,,,,0,,0,,0,,0,,,,"HK1003 -Blackpoint D2 - Rev.0E DD30092021;PR"
1.12.10.1,55988,"2571 GASEOUS FUEL TRANSPORT, TREATMENT / FEEDING EK",5121,"HK1003-Rev.0E-3",WBS,"55973",,,,100,Complete,,,,,,,,,0,,0,,0,,0,,,,"HK1003 -Blackpoint D2 - Rev.0E DD30092021;PR;2000 STEAM GENERATOR / AUXILIARY EQUIPMENT"
1.12.10.1.1,55991,"2571.15 FUEL GAS FINAL FILTER / METERING EK-",5121,"HK1003-Rev.0E-3",WBS,"55988",,,,,NotStart,,,,,,,,,,,,,,,,,,,"HK1003 -Blackpoint D2 - Rev.0E DD30092021;PR;2000 STEAM GENERATOR / AUXILIARY EQUIPMENT;2571 GASEOUS FUEL TRANSPORT, TREATMENT / FEEDING EK"
1.12.10.1.2,55990,"2571.10 FUEL GAS PREHEATER (OPTION) EKC",5121,"HK1003-Rev.0E-3",WBS,"55988",,,,,NotStart,,,,,,,,,,,,,,,,,,,"HK1003 -Blackpoint D2 - Rev.0E DD30092021;PR;2000 STEAM GENERATOR / AUXILIARY EQUIPMENT;2571 GASEOUS FUEL TRANSPORT, TREATMENT / FEEDING EK"
1.12.10.1.3,55989,"2571.05 GAS FILTER / METERING / REDUCING STATION EK-",5121,"HK1003-Rev.0E-3",WBS,"55988",,,,,NotStart,,,,,,,,,,,,,,,,,,,"HK1003 -Blackpoint D2 - Rev.0E DD30092021;PR;2000 STEAM GENERATOR / AUXILIARY EQUIPMENT;2571 GASEOUS FUEL TRANSPORT, TREATMENT / FEEDING EK"
1.12.10.2,55986,"2521 FUEL OIL FORWARDING SYSTEM EG",5121,"HK1003-Rev.0E-3",WBS,"55973",,,,100,Complete,,,,,,,,,0,,0,,0,,0,,,,"HK1003 -Blackpoint D2 - Rev.0E DD30092021;PR;2000 STEAM GENERATOR / AUXILIARY EQUIPMENT"
1.12.10.2.1,55987,"2521 FUEL OIL/FORWARDING SYSTEM EG-",5121,"HK1003-Rev.0E-3",WBS,"55986",,,,,NotStart,,,,,,,,,,,,,,,,,,,"HK1003 -Blackpoint D2 - Rev.0E DD30092021;PR;2000 STEAM GENERATOR / AUXILIARY EQUIPMENT;2521 FUEL OIL FORWARDING SYSTEM EG"
1.12.10.3,55984,"2511 FUEL OIL STORAGE, FORWARDING / TREATMENT SYS. EG",5121,"HK1003-Rev.0E-3",WBS,"55973",,,,100,Complete,,,,,,,,,0,,0,,0,,0,,,,"HK1003 -Blackpoint D2 - Rev.0E DD30092021;PR;2000 STEAM GENERATOR / AUXILIARY EQUIPMENT"
1.12.10.3.1,55985,"2511.05 FUEL OIL STORAGE TANK EGB",5121,"HK1003-Rev.0E-3",WBS,"55984",,,,,NotStart,,,,,,,,,,,,,,,,,,,"HK1003 -Blackpoint D2 - Rev.0E DD30092021;PR;2000 STEAM GENERATOR / AUXILIARY EQUIPMENT;2511 FUEL OIL STORAGE, FORWARDING / TREATMENT SYS. EG"
1.12.10.4,55982,"2231 AUXILIARY STEAM GENERATING SYSTEM QH",5121,"HK1003-Rev.0E-3",WBS,"55973",,,,100,Complete,,,,,,,,,0,,0,,0,,0,,,,"HK1003 -Blackpoint D2 - Rev.0E DD30092021;PR;2000 STEAM GENERATOR / AUXILIARY EQUIPMENT"
1.12.10.4.1,55983,"2231.05 AUXILIARY BOILER QH-",5121,"HK1003-Rev.0E-3",WBS,"55982",,,,,NotStart,,,,,,,,,,,,,,,,,,,"HK1003 -Blackpoint D2 - Rev.0E DD30092021;PR;2000 STEAM GENERATOR / AUXILIARY EQUIPMENT;2231 AUXILIARY STEAM GENERATING SYSTEM QH"
1.12.10.5,55974,"2201 HEAT RECOVERY STEAM GENERATOR HRSG",5121,"HK1003-Rev.0E-3",WBS,"55973",,,,100,Complete,,,,,,,,,0,,0,,0,,0,,,,"HK1003 -Blackpoint D2 - Rev.0E DD30092021;PR;2000 STEAM GENERATOR / AUXILIARY EQUIPMENT"
1.12.10.5.1,55981,"2201.35 COMMISSIONING HRSG",5121,"HK1003-Rev.0E-3",WBS,"55974",,,,,NotStart,,,,,,,,,,,,,,,,,,,"HK1003 -Blackpoint D2 - Rev.0E DD30092021;PR;2000 STEAM GENERATOR / AUXILIARY EQUIPMENT;2201 HEAT RECOVERY STEAM GENERATOR HRSG"
1.12.10.5.2,55980,"2201.30 LV DISTRIBUTION HRSG",5121,"HK1003-Rev.0E-3",WBS,"55974",,,,,NotStart,,,,,,,,,,,,,,,,,,,"HK1003 -Blackpoint D2 - Rev.0E DD30092021;PR;2000 STEAM GENERATOR / AUXILIARY EQUIPMENT;2201 HEAT RECOVERY STEAM GENERATOR HRSG"
1.12.10.5.3,55979,"2201.25 I&C EQUIPMENT HRSG",5121,"HK1003-Rev.0E-3",WBS,"55974",,,,,NotStart,,,,,,,,,,,,,,,,,,,"HK1003 -Blackpoint D2 - Rev.0E DD30092021;PR;2000 STEAM GENERATOR / AUXILIARY EQUIPMENT;2201 HEAT RECOVERY STEAM GENERATOR HRSG"
1.12.10.5.4,55978,"2201.20 MECHANICAL EQUIPMENT HRSG",5121,"HK1003-Rev.0E-3",WBS,"55974",,,,,NotStart,,,,,,,,,,,,,,,,,,,"HK1003 -Blackpoint D2 - Rev.0E DD30092021;PR;2000 STEAM GENERATOR / AUXILIARY EQUIPMENT;2201 HEAT RECOVERY STEAM GENERATOR HRSG"
1.12.10.5.5,55977,"2201.15 STEEL STRUCTURE HRSG",5121,"HK1003-Rev.0E-3",WBS,"55974",,,,,NotStart,,,,,,,,,,,,,,,,,,,"HK1003 -Blackpoint D2 - Rev.0E DD30092021;PR;2000 STEAM GENERATOR / AUXILIARY EQUIPMENT;2201 HEAT RECOVERY STEAM GENERATOR HRSG"
1.12.10.5.6,55976,"2201.10 DETAIL DESIGN HRSG",5121,"HK1003-Rev.0E-3",WBS,"55974",,,,,NotStart,,,,,,,,,,,,,,,,,,,"HK1003 -Blackpoint D2 - Rev.0E DD30092021;PR;2000 STEAM GENERATOR / AUXILIARY EQUIPMENT;2201 HEAT RECOVERY STEAM GENERATOR HRSG"
1.12.10.5.7,55975,"2201.05 BASIC DESIGN & ORDERING HRSG",5121,"HK1003-Rev.0E-3",WBS,"55974",,,,,NotStart,,,,,,,,,,,,,,,,,,,"HK1003 -Blackpoint D2 - Rev.0E DD30092021;PR;2000 STEAM GENERATOR / AUXILIARY EQUIPMENT;2201 HEAT RECOVERY STEAM GENERATOR HRSG"
1.12.11,55935,"0000 OVERALL PROJECT",5121,"HK1003-Rev.0E-3",WBS,"55934",,,,100,Complete,,,,,,,,,0,,0,,0,,0,,,,"HK1003 -Blackpoint D2 - Rev.0E DD30092021;PR"
1.12.11.1,55972,"0180 SITE MOBILIZATION",5121,"HK1003-Rev.0E-3",WBS,"55935",,,,,NotStart,,,,,,,,,,,,,,,,,,,"HK1003 -Blackpoint D2 - Rev.0E DD30092021;PR;0000 OVERALL PROJECT"
1.12.11.2,55971,"0170 PLOT PLAN DESIGN",5121,"HK1003-Rev.0E-3",WBS,"55935",,,,,NotStart,,,,,,,,,,,,,,,,,,,"HK1003 -Blackpoint D2 - Rev.0E DD30092021;PR;0000 OVERALL PROJECT"
1.12.11.3,55967,"0160 GENERAL CONTRACTING",5121,"HK1003-Rev.0E-3",WBS,"55935",,,,100,Complete,,,,,,,,,0,,0,,0,,0,,,,"HK1003 -Blackpoint D2 - Rev.0E DD30092021;PR;0000 OVERALL PROJECT"
1.12.11.3.1,55970,"0160.05 CIVIL WORKS TENDERING",5121,"HK1003-Rev.0E-3",WBS,"55967",,,,,NotStart,,,,,,,,,,,,,,,,,,,"HK1003 -Blackpoint D2 - Rev.0E DD30092021;PR;0000 OVERALL PROJECT;0160 GENERAL CONTRACTING"
1.12.11.3.2,55969,"0160.25 KKS PLANT LABELLING CONTRACT",5121,"HK1003-Rev.0E-3",WBS,"55967",,,,,NotStart,,,,,,,,,,,,,,,,,,,"HK1003 -Blackpoint D2 - Rev.0E DD30092021;PR;0000 OVERALL PROJECT;0160 GENERAL CONTRACTING"
1.12.11.3.3,55968,"0160.20 ERECTION CONTRACT",5121,"HK1003-Rev.0E-3",WBS,"55967",,,,,NotStart,,,,,,,,,,,,,,,,,,,"HK1003 -Blackpoint D2 - Rev.0E DD30092021;PR;0000 OVERALL PROJECT;0160 GENERAL CONTRACTING"
1.12.11.4,55962,"0150 GENERAL PLANT CONCEPTS",5121,"HK1003-Rev.0E-3",WBS,"55935",,,,100,Complete,,,,,,,,,0,,0,,0,,0,,,,"HK1003 -Blackpoint D2 - Rev.0E DD30092021;PR;0000 OVERALL PROJECT"
1.12.11.4.1,55966,"0150.20 COLOUR SCHEME / ARCHITECTURAL CONCEPTS",5121,"HK1003-Rev.0E-3",WBS,"55962",,,,,NotStart,,,,,,,,,,,,,,,,,,,"HK1003 -Blackpoint D2 - Rev.0E DD30092021;PR;0000 OVERALL PROJECT;0150 GENERAL PLANT CONCEPTS"
1.12.11.4.2,55965,"0150.15 DESIGN CRITERIA CONCEPT",5121,"HK1003-Rev.0E-3",WBS,"55962",,,,,NotStart,,,,,,,,,,,,,,,,,,,"HK1003 -Blackpoint D2 - Rev.0E DD30092021;PR;0000 OVERALL PROJECT;0150 GENERAL PLANT CONCEPTS"
1.12.11.4.3,55964,"0150.05 FIRE FIGHTING / EXPLOSION PROTECTION CONCEPT",5121,"HK1003-Rev.0E-3",WBS,"55962",,,,,NotStart,,,,,,,,,,,,,,,,,,,"HK1003 -Blackpoint D2 - Rev.0E DD30092021;PR;0000 OVERALL PROJECT;0150 GENERAL PLANT CONCEPTS"
1.12.11.4.4,55963,"0150.10 NOISE PROTECTION CONCEPT",5121,"HK1003-Rev.0E-3",WBS,"55962",,,,,NotStart,,,,,,,,,,,,,,,,,,,"HK1003 -Blackpoint D2 - Rev.0E DD30092021;PR;0000 OVERALL PROJECT;0150 GENERAL PLANT CONCEPTS"
1.12.11.5,55954,"0140 DOCUMENTATION",5121,"HK1003-Rev.0E-3",WBS,"55935",,,,100,Complete,,,,,,,,,0,,0,,0,,0,,,,"HK1003 -Blackpoint D2 - Rev.0E DD30092021;PR;0000 OVERALL PROJECT"
1.12.11.5.1,55961,"0140.35 SDS DOCUMENT GROUPS AS BUILT DELIVERY",5121,"HK1003-Rev.0E-3",WBS,"55954",,,,,NotStart,,,,,,,,,,,,,,,,,,,"HK1003 -Blackpoint D2 - Rev.0E DD30092021;PR;0000 OVERALL PROJECT;0140 DOCUMENTATION"
1.12.11.5.2,55960,"0140.30 DDS DOCUMENT GROUPS FINAL AS RELEASED FOR MANUFACTURING",5121,"HK1003-Rev.0E-3",WBS,"55954",,,,,NotStart,,,,,,,,,,,,,,,,,,,"HK1003 -Blackpoint D2 - Rev.0E DD30092021;PR;0000 OVERALL PROJECT;0140 DOCUMENTATION"
1.12.11.5.3,55959,"0140.25 DDS DOCUMENT GROUPS EXTERNAL INTERFACES FINAL",5121,"HK1003-Rev.0E-3",WBS,"55954",,,,,NotStart,,,,,,,,,,,,,,,,,,,"HK1003 -Blackpoint D2 - Rev.0E DD30092021;PR;0000 OVERALL PROJECT;0140 DOCUMENTATION"
1.12.11.5.4,55958,"0140.20 DDS DOCUMENT GROUPS INITIAL",5121,"HK1003-Rev.0E-3",WBS,"55954",,,,,NotStart,,,,,,,,,,,,,,,,,,,"HK1003 -Blackpoint D2 - Rev.0E DD30092021;PR;0000 OVERALL PROJECT;0140 DOCUMENTATION"
1.12.11.5.5,55957,"0140.15 SOFTWARE DELIVERABLES",5121,"HK1003-Rev.0E-3",WBS,"55954",,,,,NotStart,,,,,,,,,,,,,,,,,,,"HK1003 -Blackpoint D2 - Rev.0E DD30092021;PR;0000 OVERALL PROJECT;0140 DOCUMENTATION"
1.12.11.5.6,55956,"0140.10 OPERATING MANUAL (OM/BHB)",5121,"HK1003-Rev.0E-3",WBS,"55954",,,,,NotStart,,,,,,,,,,,,,,,,,,,"HK1003 -Blackpoint D2 - Rev.0E DD30092021;PR;0000 OVERALL PROJECT;0140 DOCUMENTATION"
1.12.11.5.7,55955,"0140.05 OPERATING / MAINTENANCE DOCUMENTATION",5121,"HK1003-Rev.0E-3",WBS,"55954",,,,,NotStart,,,,,,,,,,,,,,,,,,,"HK1003 -Blackpoint D2 - Rev.0E DD30092021;PR;0000 OVERALL PROJECT;0140 DOCUMENTATION"
1.12.11.6,55951,"0130 PROJECT SETUP",5121,"HK1003-Rev.0E-3",WBS,"55935",,,,100,Complete,,,,,,,,,0,,0,,0,,0,,,,"HK1003 -Blackpoint D2 - Rev.0E DD30092021;PR;0000 OVERALL PROJECT"
1.12.11.6.1,55953,"0130.10 COMMERCIAL PROJECT MANAGEMENT",5121,"HK1003-Rev.0E-3",WBS,"55951",,,,,NotStart,,,,,,,,,,,,,,,,,,,"HK1003 -Blackpoint D2 - Rev.0E DD30092021;PR;0000 OVERALL PROJECT;0130 PROJECT SETUP"
1.12.11.6.2,55952,"0130.05 TECHNICAL CONTRACT CONIDITIONS",5121,"HK1003-Rev.0E-3",WBS,"55951",,,,,NotStart,,,,,,,,,,,,,,,,,,,"HK1003 -Blackpoint D2 - Rev.0E DD30092021;PR;0000 OVERALL PROJECT;0130 PROJECT SETUP"
1.12.11.7,55940,"0120 KEY DATES",5121,"HK1003-Rev.0E-3",WBS,"55935",,,,100,Complete,,,,,,,,,0,,0,,0,,0,,,,"HK1003 -Blackpoint D2 - Rev.0E DD30092021;PR;0000 OVERALL PROJECT"
1.12.11.7.1,55950,"0120.35 KEY DATES COMMISSIONING",5121,"HK1003-Rev.0E-3",WBS,"55940",,,,,NotStart,,,,,,,,,,,,,,,,,,,"HK1003 -Blackpoint D2 - Rev.0E DD30092021;PR;0000 OVERALL PROJECT;0120 KEY DATES"
1.12.11.7.2,55949,"0120.30 KEY DATES BOILER (HRSG)",5121,"HK1003-Rev.0E-3",WBS,"55940",,,,,NotStart,,,,,,,,,,,,,,,,,,,"HK1003 -Blackpoint D2 - Rev.0E DD30092021;PR;0000 OVERALL PROJECT;0120 KEY DATES"
1.12.11.7.3,55948,"0120.27 KEY DATES GAS TURBINE, STEAM TURBINE, CONDENSER, GENERATOR",5121,"HK1003-Rev.0E-3",WBS,"55940",,,,,NotStart,,,,,,,,,,,,,,,,,,,"HK1003 -Blackpoint D2 - Rev.0E DD30092021;PR;0000 OVERALL PROJECT;0120 KEY DATES"
1.12.11.7.4,55947,"0120.25 KEY DATES STEAM TURBINE, CONDENSER, ST GENERATOR",5121,"HK1003-Rev.0E-3",WBS,"55940",,,,,NotStart,,,,,,,,,,,,,,,,,,,"HK1003 -Blackpoint D2 - Rev.0E DD30092021;PR;0000 OVERALL PROJECT;0120 KEY DATES"
1.12.11.7.5,55944,"0120.20 KEY DATES GAS TURBINE, GT GENERATOR",5121,"HK1003-Rev.0E-3",WBS,"55940",,,,100,Complete,,,,,,,,,0,,0,,0,,0,,,,"HK1003 -Blackpoint D2 - Rev.0E DD30092021;PR;0000 OVERALL PROJECT;0120 KEY DATES"
1.12.11.7.5.1,55946,"0120.20.12 KEY DATES GAS TURBINE 12, GT GENERATOR 12UMB",5121,"HK1003-Rev.0E-3",WBS,"55944",,,,,NotStart,,,,,,,,,,,,,,,,,,,"HK1003 -Blackpoint D2 - Rev.0E DD30092021;PR;0000 OVERALL PROJECT;0120 KEY DATES;0120.20 KEY DATES GAS TURBINE, GT GENERATOR"
1.12.11.7.5.2,55945,"0120.20.11 KEY DATES GAS TURBINE 11, GT GENERATOR 11UMB",5121,"HK1003-Rev.0E-3",WBS,"55944",,,,,NotStart,,,,,,,,,,,,,,,,,,,"HK1003 -Blackpoint D2 - Rev.0E DD30092021;PR;0000 OVERALL PROJECT;0120 KEY DATES;0120.20 KEY DATES GAS TURBINE, GT GENERATOR"
1.12.11.7.6,55943,"0120.15 KEY DATES ELECTRICAL",5121,"HK1003-Rev.0E-3",WBS,"55940",,,,,NotStart,,,,,,,,,,,,,,,,,,,"HK1003 -Blackpoint D2 - Rev.0E DD30092021;PR;0000 OVERALL PROJECT;0120 KEY DATES"
1.12.11.7.7,55942,"0120.10 KEY DATES MECHANICAL",5121,"HK1003-Rev.0E-3",WBS,"55940",,,,,NotStart,,,,,,,,,,,,,,,,,,,"HK1003 -Blackpoint D2 - Rev.0E DD30092021;PR;0000 OVERALL PROJECT;0120 KEY DATES"
1.12.11.7.8,55941,"0120.05 KEY DATES CIVIL CONSTRUCTION",5121,"HK1003-Rev.0E-3",WBS,"55940",,,,,NotStart,,,,,,,,,,,,,,,,,,,"HK1003 -Blackpoint D2 - Rev.0E DD30092021;PR;0000 OVERALL PROJECT;0120 KEY DATES"
1.12.11.8,55938,"0110 TERMINAL POINTS",5121,"HK1003-Rev.0E-3",WBS,"55935",,,,100,Complete,,,,,,,,,0,,0,,0,,0,,,,"HK1003 -Blackpoint D2 - Rev.0E DD30092021;PR;0000 OVERALL PROJECT"
1.12.11.8.1,55939,"0110.05 TERMINAL POINTS WITH CLIENT",5121,"HK1003-Rev.0E-3",WBS,"55938",,,,,NotStart,,,,,,,,,,,,,,,,,,,"HK1003 -Blackpoint D2 - Rev.0E DD30092021;PR;0000 OVERALL PROJECT;0110 TERMINAL POINTS"
1.12.11.9,55936,"0100 CONTRACT DATES",5121,"HK1003-Rev.0E-3",WBS,"55935",,,,100,Complete,,,,,,,,,0,,0,,0,,0,,,,"HK1003 -Blackpoint D2 - Rev.0E DD30092021;PR;0000 OVERALL PROJECT"
1.12.11.9.1,55937,"0100.05 CONTRACT MILESTONES / INTERFACE EVENTS WITH CLIENT",5121,"HK1003-Rev.0E-3",WBS,"55936",,,,,NotStart,,,,,,,,,,,,,,,,,,,"HK1003 -Blackpoint D2 - Rev.0E DD30092021;PR;0000 OVERALL PROJECT;0100 CONTRACT DATES"
1.13,55933,"DEMOLITION WORKS",5121,"HK1003-Rev.0E-3",WBS,"55902",,,,,NotStart,,,,,,,,,,,,,,,,,,,"HK1003 -Blackpoint D2 - Rev.0E DD30092021"
1.14,55927,"KEADBY I OUTAGE DATES",5121,"HK1003-Rev.0E-3",WBS,"55902",,,,100,Complete,,,,,,,,,0,,0,,0,,0,,,,"HK1003 -Blackpoint D2 - Rev.0E DD30092021"
1.14.1,55932,"OUTAGES K1 -2021 / 2022",5121,"HK1003-Rev.0E-3",WBS,"55927",,,,,NotStart,,,,,,,,,,,,,,,,,,,"HK1003 -Blackpoint D2 - Rev.0E DD30092021;KEADBY I OUTAGE DATES"
1.14.2,55931,"OUTAGES K1 -2020 / 2021",5121,"HK1003-Rev.0E-3",WBS,"55927",,,,,NotStart,,,,,,,,,,,,,,,,,,,"HK1003 -Blackpoint D2 - Rev.0E DD30092021;KEADBY I OUTAGE DATES"
1.14.3,55930,"OUTAGES K1 -2019 / 2020",5121,"HK1003-Rev.0E-3",WBS,"55927",,,,,NotStart,,,,,,,,,,,,,,,,,,,"HK1003 -Blackpoint D2 - Rev.0E DD30092021;KEADBY I OUTAGE DATES"
1.14.4,55929,"OUTAGES K1 -2018 / 2019",5121,"HK1003-Rev.0E-3",WBS,"55927",,,,,NotStart,,,,,,,,,,,,,,,,,,,"HK1003 -Blackpoint D2 - Rev.0E DD30092021;KEADBY I OUTAGE DATES"
1.14.5,55928,"OUTAGES K1 - 2017 / 2018",5121,"HK1003-Rev.0E-3",WBS,"55927",,,,,NotStart,,,,,,,,,,,,,,,,,,,"HK1003 -Blackpoint D2 - Rev.0E DD30092021;KEADBY I OUTAGE DATES"
1.15,55907,"TERMINAL POINTS",5121,"HK1003-Rev.0E-3",WBS,"55902",,,,100,Complete,08/08/2020,08/08/2020,18/03/2023,,,,,,1,1,137,,0,0,31,,,,"HK1003 -Blackpoint D2 - Rev.0E DD30092021"
1.15.1,55909,"PERMANENT TERMINAL POINTS (RESP. SSE AS PER OIL)",5121,"HK1003-Rev.0E-3",WBS,"55907",,,,100,Complete,,,,,,,,,0,,0,,0,,0,,,,"HK1003 -Blackpoint D2 - Rev.0E DD30092021;TERMINAL POINTS"
1.15.1.1,55910,"TERMINAL POINTS - DETAILED",5121,"HK1003-Rev.0E-3",WBS,"55909",,,,100,Complete,,,,,,,,,0,,0,,0,,0,,,,"HK1003 -Blackpoint D2 - Rev.0E DD30092021;TERMINAL POINTS;PERMANENT TERMINAL POINTS (RESP. SSE AS PER OIL)"
1.15.1.1.1,55926,"OPTION: HV CONNECTION / TERMINAL POINT /  KK3-PYLON",5121,"HK1003-Rev.0E-3",WBS,"55910",,,,,NotStart,,,,,,,,,,,,,,,,,,,"HK1003 -Blackpoint D2 - Rev.0E DD30092021;TERMINAL POINTS;PERMANENT TERMINAL POINTS (RESP. SSE AS PER OIL);TERMINAL POINTS - DETAILED"
1.15.1.1.2,55925,"TP#16.1 - 16.5 - Road Access",5121,"HK1003-Rev.0E-3",WBS,"55910",,,,,NotStart,,,,,,,,,,,,,,,,,,,"HK1003 -Blackpoint D2 - Rev.0E DD30092021;TERMINAL POINTS;PERMANENT TERMINAL POINTS (RESP. SSE AS PER OIL);TERMINAL POINTS - DETAILED"
1.15.1.1.3,55924,"TP#15 - CT blowdown (PSB-SYSTEM)",5121,"HK1003-Rev.0E-3",WBS,"55910",,,,,NotStart,,,,,,,,,,,,,,,,,,,"HK1003 -Blackpoint D2 - Rev.0E DD30092021;TERMINAL POINTS;PERMANENT TERMINAL POINTS (RESP. SSE AS PER OIL);TERMINAL POINTS - DETAILED"
1.15.1.1.4,55923,"TP#9.2 - Fire Water Return",5121,"HK1003-Rev.0E-3",WBS,"55910",,,,,NotStart,,,,,,,,,,,,,,,,,,,"HK1003 -Blackpoint D2 - Rev.0E DD30092021;TERMINAL POINTS;PERMANENT TERMINAL POINTS (RESP. SSE AS PER OIL);TERMINAL POINTS - DETAILED"
1.15.1.1.5,55922,"TP#9.1 - Fire Water Supply",5121,"HK1003-Rev.0E-3",WBS,"55910",,,,,NotStart,,,,,,,,,,,,,,,,,,,"HK1003 -Blackpoint D2 - Rev.0E DD30092021;TERMINAL POINTS;PERMANENT TERMINAL POINTS (RESP. SSE AS PER OIL);TERMINAL POINTS - DETAILED"
1.15.1.1.6,55921,"TP#8 - Cable to CCR",5121,"HK1003-Rev.0E-3",WBS,"55910",,,,,NotStart,,,,,,,,,,,,,,,,,,,"HK1003 -Blackpoint D2 - Rev.0E DD30092021;TERMINAL POINTS;PERMANENT TERMINAL POINTS (RESP. SSE AS PER OIL);TERMINAL POINTS - DETAILED"
1.15.1.1.7,55920,"TTP#5.02 - Temporary power for CT area",5121,"HK1003-Rev.0E-3",WBS,"55910",,,,,NotStart,,,,,,,,,,,,,,,,,,,"HK1003 -Blackpoint D2 - Rev.0E DD30092021;TERMINAL POINTS;PERMANENT TERMINAL POINTS (RESP. SSE AS PER OIL);TERMINAL POINTS - DETAILED"
1.15.1.1.8,55919,"TTP#5.01 - Temporary power for K1 area",5121,"HK1003-Rev.0E-3",WBS,"55910",,,,,NotStart,,,,,,,,,,,,,,,,,,,"HK1003 -Blackpoint D2 - Rev.0E DD30092021;TERMINAL POINTS;PERMANENT TERMINAL POINTS (RESP. SSE AS PER OIL);TERMINAL POINTS - DETAILED"
1.15.1.1.9,55918,"TP#5 - Water Intake",5121,"HK1003-Rev.0E-3",WBS,"55910",,,,,NotStart,,,,,,,,,,,,,,,,,,,"HK1003 -Blackpoint D2 - Rev.0E DD30092021;TERMINAL POINTS;PERMANENT TERMINAL POINTS (RESP. SSE AS PER OIL);TERMINAL POINTS - DETAILED"
1.15.1.1.10,55917,"TP#4 - Demin Supply Lines",5121,"HK1003-Rev.0E-3",WBS,"55910",,,,,NotStart,,,,,,,,,,,,,,,,,,,"HK1003 -Blackpoint D2 - Rev.0E DD30092021;TERMINAL POINTS;PERMANENT TERMINAL POINTS (RESP. SSE AS PER OIL);TERMINAL POINTS - DETAILED"
1.15.1.1.11,55916,"TP#3.2 - Water at K2",5121,"HK1003-Rev.0E-3",WBS,"55910",,,,,NotStart,,,,,,,,,,,,,,,,,,,"HK1003 -Blackpoint D2 - Rev.0E DD30092021;TERMINAL POINTS;PERMANENT TERMINAL POINTS (RESP. SSE AS PER OIL);TERMINAL POINTS - DETAILED"
1.15.1.1.12,55915,"TP#3.1 - Potable Water at FO area",5121,"HK1003-Rev.0E-3",WBS,"55910",,,,,NotStart,,,,,,,,,,,,,,,,,,,"HK1003 -Blackpoint D2 - Rev.0E DD30092021;TERMINAL POINTS;PERMANENT TERMINAL POINTS (RESP. SSE AS PER OIL);TERMINAL POINTS - DETAILED"
1.15.1.1.13,55914,"TTP3.03 / 3.04 - CONSTRUCTION SITE DEWATERING",5121,"HK1003-Rev.0E-3",WBS,"55910",,,,,NotStart,,,,,,,,,,,,,,,,,,,"HK1003 -Blackpoint D2 - Rev.0E DD30092021;TERMINAL POINTS;PERMANENT TERMINAL POINTS (RESP. SSE AS PER OIL);TERMINAL POINTS - DETAILED"
1.15.1.1.14,55913,"TTP3.01 - SITE WASTE WATER",5121,"HK1003-Rev.0E-3",WBS,"55910",,,,,NotStart,,,,,,,,,,,,,,,,,,,"HK1003 -Blackpoint D2 - Rev.0E DD30092021;TERMINAL POINTS;PERMANENT TERMINAL POINTS (RESP. SSE AS PER OIL);TERMINAL POINTS - DETAILED"
1.15.1.1.15,55912,"TTP2.01  - SITE POTABLE WATER",5121,"HK1003-Rev.0E-3",WBS,"55910",,,,,NotStart,,,,,,,,,,,,,,,,,,,"HK1003 -Blackpoint D2 - Rev.0E DD30092021;TERMINAL POINTS;PERMANENT TERMINAL POINTS (RESP. SSE AS PER OIL);TERMINAL POINTS - DETAILED"
1.15.1.1.16,55911,"TP#1 - Fuel Gas Supply",5121,"HK1003-Rev.0E-3",WBS,"55910",,,,,NotStart,,,,,,,,,,,,,,,,,,,"HK1003 -Blackpoint D2 - Rev.0E DD30092021;TERMINAL POINTS;PERMANENT TERMINAL POINTS (RESP. SSE AS PER OIL);TERMINAL POINTS - DETAILED"
1.15.2,55908,"TEMPORARY TERMINAL POINTS DURING CONSTRUCTION PHASE",5121,"HK1003-Rev.0E-3",WBS,"55907",,,,,Active,08/08/2020,08/08/2020,18/03/2023,,,,,,1,1,137,,0,0,31,,,,"HK1003 -Blackpoint D2 - Rev.0E DD30092021;TERMINAL POINTS"
1.15.2-1,SI--GHC6-10,"DEMINERALIZED WATER REQUIRED",5121,"HK1003-Rev.0E-3",TT_Mile,"55908",-,-,-,0,TK_NotStart,18/03/2023,,18/03/2023,,"SI-----1-05 FS","SI-----1-05","SI20GHC6-90& FS","SI20GHC6-90&",137,,137,,31,,31,,93,0,"HK1003 -Blackpoint D2 - Rev.0E DD30092021;TERMINAL POINTS;TEMPORARY TERMINAL POINTS DURING CONSTRUCTION PHASE"
1.15.2-2,SI20TP-116&,"TP-M5A - TOWNSWATER DOMESTIC SYSTEM (POTABLE WATER)",5121,"HK1003-Rev.0E-3",TT_Mile,"55908",-,-,-,0,TK_NotStart,16/08/2022,,16/08/2022,,"SI-----1-05 FS,SI-----5-20 FS","SI-----1-05,SI-----5-20","SI20GHC6-90& FS,SI20TP-118& FS,SI20TP-117& FS,SI20TPM5A6-20 FS","SI20GHC6-90&,SI20TP-118&,SI20TP-117&,SI20TPM5A6-20",106,,106,,24,,24,,77,1424,"HK1003 -Blackpoint D2 - Rev.0E DD30092021;TERMINAL POINTS;TEMPORARY TERMINAL POINTS DURING CONSTRUCTION PHASE"
1.15.2-3,SI-----5-20,"SITE HANDOVER FOR CONSTRUCTION - EARLY WORKS COMPLETED INCL. WORK PREPARATION IN UHA, URD & URA AREA",5121,"HK1003-Rev.0E-3",TT_Mile,"55908",-,-,-,100,TK_Complete,01/07/2021,01/07/2021,01/07/2021,01/07/2021,"CLP20UEZ5-84 FS,CL20UBZ-10 FS,CL20UBZ-15 FS,SI20TP-267& FS,CL20TPE9A7-18 FS,SI-P221-430 FS,SI-----1-05 FS,SI-----5-10 FS","CLP20UEZ5-84,CL20UBZ-10,CL20UBZ-15,SI20TP-267&,CL20TPE9A7-18,SI-P221-430,SI-----1-05,SI-----5-10","SI--3335-63# SS,SI--3335-65 SS,SI-----5-21& FS,SI20PAB5-35 FS,SI20UMC5Z15 FS,SI20UMC5Z46 FS,SI20UMC5B75 FS,SI20UTG5-10 FS,SI20UMX5-05 FS,SI20USX5-10 FS,SI20UHW5-20 FS,SI20UHA5-05 FS,SI20UBA5-45 FS,SI20UTG5-40 FS,SI20ULA5-05 FS,SI20UBH5-20 FS,SI20UHX5-05 FS,SI20UVM5-05 FS,SI20UBA5-7 FS,SI20UBA5-05 FS,SI20UTG5-20 FS,SI20UBF5-05 FS,SI20UBD5-60 FS,SI20UTG5-30 FS,SI20UBD5-05 FS,SI20UBX5-05 FS,SI20UBY5-49 FS,SI20UBZ5-65 FS,SI20UEX2-75 FS,SI20UBY5-06 FS,SI20UBZ5-61 FS,SI20ULY5-45 FS,SI20UBA5-59 FS,SI20UBD5-55 FS,SI20UBY5-57 FS,SI20UBZ5-69 FS,SI20UTG5-50 FS,SI20URA5-05 FS,SI20URA5-06 FS,SI20UBY5-53 FS,SI20UEY5-06 FS,SI20UMX5-06 FS,SI20UEY5-85 FS,SI20UMY5-05 FS,SI20UBA5C-5 FS,SI20UTG5-60 FS,SI20UBH5-23 FS,SI20UQX5-45 FS,SI20UQZ5-158 FS,SI20UQY5-146 FS,SI20UQY5-150 FS,SI20UQY5-154 FS,SI20UQZ5-154 FS,CLP20ULZ5-82 FS,CLP20UBZ5-76 FS,SI-PM-15 FS,SI-P222-62 FS,SI20TP-116& FS,SI20TPE9A7-28 FS,SI--3335-66 FS,SI--3335-67 FS,SI--3335-68 FS,SI--3335-69 FS,SI--3335-72 FS,SI--3335-73 FS,SI--3335-74 FS,SI--3335-75 FS,SI--3335-76 FS,SI--3335-77 FS,SI--3335-78 FS,SI--3335-79 FS,SI20PAB5-85.36 FS,SI--3335-80 FS,SI20UTG5-70.00 FS,SI20UEN5-05.00 FS,SI20UBN5-5.00 FS,SI20UEN5-19.00 FS","SI--3335-63#,SI--3335-65,SI-----5-21&,SI20PAB5-35,SI20UMC5Z15,SI20UMC5Z46,SI20UMC5B75,SI20UTG5-10,SI20UMX5-05,SI20USX5-10,SI20UHW5-20,SI20UHA5-05,SI20UBA5-45,SI20UTG5-40,SI20ULA5-05,SI20UBH5-20,SI20UHX5-05,SI20UVM5-05,SI20UBA5-7,SI20UBA5-05,SI20UTG5-20,SI20UBF5-05,SI20UBD5-60,SI20UTG5-30,SI20UBD5-05,SI20UBX5-05,SI20UBY5-49,SI20UBZ5-65,SI20UEX2-75,SI20UBY5-06,SI20UBZ5-61,SI20ULY5-45,SI20UBA5-59,SI20UBD5-55,SI20UBY5-57,SI20UBZ5-69,SI20UTG5-50,SI20URA5-05,SI20URA5-06,SI20UBY5-53,SI20UEY5-06,SI20UMX5-06,SI20UEY5-85,SI20UMY5-05,SI20UBA5C-5,SI20UTG5-60,SI20UBH5-23,SI20UQX5-45,SI20UQZ5-158,SI20UQY5-146,SI20UQY5-150,SI20UQY5-154,SI20UQZ5-154,CLP20ULZ5-82,CLP20UBZ5-76,SI-PM-15,SI-P222-62,SI20TP-116&,SI20TPE9A7-28,SI--3335-66,SI--3335-67,SI--3335-68,SI--3335-69,SI--3335-72,SI--3335-73,SI--3335-74,SI--3335-75,SI--3335-76,SI--3335-77,SI--3335-78,SI--3335-79,SI20PAB5-85.36,SI--3335-80,SI20UTG5-70.00,SI20UEN5-05.00,SI20UBN5-5.00,SI20UEN5-19.00",47,47,47,47,11,11,11,11,19,,"HK1003 -Blackpoint D2 - Rev.0E DD30092021;TERMINAL POINTS;TEMPORARY TERMINAL POINTS DURING CONSTRUCTION PHASE"
1.15.2-4,SI-----5-10,"WATER AND POWER SUPPLY FOR SITE REQUIRED FROM CLIENT",5121,"HK1003-Rev.0E-3",TT_Mile,"55908",-,-,-,100,TK_Complete,01/07/2021,01/07/2021,01/07/2021,01/07/2021,"SI-----1-05 SS,SI-----5-22 FS","SI-----1-05,SI-----5-22","SI-----5-20 FS","SI-----5-20",47,47,47,47,11,11,11,11,19,,"HK1003 -Blackpoint D2 - Rev.0E DD30092021;TERMINAL POINTS;TEMPORARY TERMINAL POINTS DURING CONSTRUCTION PHASE"
1.15.2-5,SI-----5-21&,"START MAIN CIVIL WORKS",5121,"HK1003-Rev.0E-3",TT_Mile,"55908",-,-,-,100,TK_Complete,08/07/2021,08/07/2021,08/07/2021,08/07/2021,"SI-----5-20 FS,SI--5555-15 FS,CLP20UEZ5-80 FS,CLP20ULZ5-80 FS,SI-P222-94 FS,SI-P222-95 FS,SI-P222-97 FS,SI-P222-98 FS,SI-P222-99 FS,SI-P222-93 FS,SI-P222-151 FS","SI-----5-20,SI--5555-15,CLP20UEZ5-80,CLP20ULZ5-80,SI-P222-94,SI-P222-95,SI-P222-97,SI-P222-98,SI-P222-99,SI-P222-93,SI-P222-151","SI20UBH5-10 FS,SI20UBN5-15 FS,SI20UEN5-21 FS,SI20UVM5-11 FS,SI20UBA5-12 FS,SI20UBA5-11 FS,SI20UBD5-10 FS,SI20UBD5-11 FS,SI20UBF5-10 FS,SI20UBX5-10 FS,SI20ULA5-10 FS,SI20UMC5A10 FS,SI20UMC5Y10 FS,SI20UMY5-10 FS,SI20UPY5P10 FS,SI20URA5-10 FS,SI20URD5-10 FS,SI20USX5-20 FS,SI20UBA5-10 FS,SI20UBA5-50 FS,SI20UBY5-10 FS,SI20UEN5-10 FS,SI20UEY5-10 FS,SI20UHA5-10 FS,SI20UHX5-10 FS,SI20UMC5A10& FS,SI20UMX5-10 FS,SI20UTG5-12 FS,SI20UTG5-74 FS,SI20UMC5B85 FS,SI20UMC5Z15 FS,SI20UMC5B75 FS,SI20UBA5-45 FS,SI20UBA5-7 FS,SI20UBA5-59 FS,SI20UBA5C-5 FS,SI20UBD5-55 FS,SI20URA5-05 FS,SI20UMC5Z46 FS,SI20UBA5-05 FS,SI20UBD5-05 FS,SI20UBF5-05 FS,SI20UBD5-60 FS,SI20UBH5-20 FS,SI20UBH5-23 FS,SI20UBX5-05 FS,SI20UBY5-06 FS,SI20UBY5-49 FS,SI20UBY5-57 FS,SI20UBY5-53 FS,SI20UBZ5-61 FS,SI20UBZ5-69 FS,SI20UBZ5-65 FS,SI20UEX2-75 FS,SI20UEY5-85 FS,SI20UEY5-06 FS,SI20UHX5-05 FS,SI20ULA5-05 FS,SI20UMX5-05 FS,SI20UMX5-06 FS,SI20UQX5-45 FS,SI20URA5-06 FS,SI20USX5-10 FS,SI20UTG5-10 FS,SI20UTG5-20 FS,SI20UTG5-30 FS,SI20UTG5-40 FS,SI20UTG5-50 FS,SI20UTG5-60 FS,SI20UVM5-05 FS,SI20UQZ5-158 FS,SI20UQZ5-154 FS,SI20UQY5-146 FS,SI20UQY5-150 FS,SI20UQY5-154 FS,SI20UMY5-05 FS,SI20ULY5-45 FS,SI20UTG5-70.00 FS,SI20UEN5-05.00 FS,SI20UBN5-5.00 FS,SI20UEN5-19.00 FS","SI20UBH5-10,SI20UBN5-15,SI20UEN5-21,SI20UVM5-11,SI20UBA5-12,SI20UBA5-11,SI20UBD5-10,SI20UBD5-11,SI20UBF5-10,SI20UBX5-10,SI20ULA5-10,SI20UMC5A10,SI20UMC5Y10,SI20UMY5-10,SI20UPY5P10,SI20URA5-10,SI20URD5-10,SI20USX5-20,SI20UBA5-10,SI20UBA5-50,SI20UBY5-10,SI20UEN5-10,SI20UEY5-10,SI20UHA5-10,SI20UHX5-10,SI20UMC5A10&,SI20UMX5-10,SI20UTG5-12,SI20UTG5-74,SI20UMC5B85,SI20UMC5Z15,SI20UMC5B75,SI20UBA5-45,SI20UBA5-7,SI20UBA5-59,SI20UBA5C-5,SI20UBD5-55,SI20URA5-05,SI20UMC5Z46,SI20UBA5-05,SI20UBD5-05,SI20UBF5-05,SI20UBD5-60,SI20UBH5-20,SI20UBH5-23,SI20UBX5-05,SI20UBY5-06,SI20UBY5-49,SI20UBY5-57,SI20UBY5-53,SI20UBZ5-61,SI20UBZ5-69,SI20UBZ5-65,SI20UEX2-75,SI20UEY5-85,SI20UEY5-06,SI20UHX5-05,SI20ULA5-05,SI20UMX5-05,SI20UMX5-06,SI20UQX5-45,SI20URA5-06,SI20USX5-10,SI20UTG5-10,SI20UTG5-20,SI20UTG5-30,SI20UTG5-40,SI20UTG5-50,SI20UTG5-60,SI20UVM5-05,SI20UQZ5-158,SI20UQZ5-154,SI20UQY5-146,SI20UQY5-150,SI20UQY5-154,SI20UMY5-05,SI20ULY5-45,SI20UTG5-70.00,SI20UEN5-05.00,SI20UBN5-5.00,SI20UEN5-19.00",48,48,48,48,11,11,11,11,21,,"HK1003 -Blackpoint D2 - Rev.0E DD30092021;TERMINAL POINTS;TEMPORARY TERMINAL POINTS DURING CONSTRUCTION PHASE"
1.15.2-6,SI-----5-22,"ACCESS TO SITE FROM CLIENT",5121,"HK1003-Rev.0E-3",TT_Mile,"55908",-,-,-,100,TK_Complete,01/07/2021,01/07/2021,01/07/2021,01/07/2021,"SI-----1-05 FS","SI-----1-05","SI20UBH5-20 FS,SI20UVM5-05 FS,SI20UBA5-59 FS,SI20UBD5-05 FS,SI20UBD5-55 FS,SI20UBF5-05 FS,SI20UBX5-05 FS,SI20ULA5-05 FS,SI20UMC5Z15 FS,SI20UMC5Z46 FS,SI20UMY5-05 FS,SI20URA5-05 FS,SI20URA5-06 FS,SI20USX5-10 FS,SI20UBY5-06 FS,SI20UEY5-06 FS,SI20UHA5-05 FS,SI20UHX5-05 FS,SI20UMX5-05 FS,SI20UTG5-10 FS,SI20UMC5B75 FS,SI-----5-10 FS,SI20UTG5-70.00 FS,SI20UEN5-05.00 FS,SI20UBN5-5.00 FS,SI20UEN5-19.00 FS","SI20UBH5-20,SI20UVM5-05,SI20UBA5-59,SI20UBD5-05,SI20UBD5-55,SI20UBF5-05,SI20UBX5-05,SI20ULA5-05,SI20UMC5Z15,SI20UMC5Z46,SI20UMY5-05,SI20URA5-05,SI20URA5-06,SI20USX5-10,SI20UBY5-06,SI20UEY5-06,SI20UHA5-05,SI20UHX5-05,SI20UMX5-05,SI20UTG5-10,SI20UMC5B75,SI-----5-10,SI20UTG5-70.00,SI20UEN5-05.00,SI20UBN5-5.00,SI20UEN5-19.00",47,47,47,47,11,11,11,11,20,,"HK1003 -Blackpoint D2 - Rev.0E DD30092021;TERMINAL POINTS;TEMPORARY TERMINAL POINTS DURING CONSTRUCTION PHASE"
1.15.2-7,SI20TP-140&,"TP-M15A - COOLING TOWER MAKE UP WATER",5121,"HK1003-Rev.0E-3",TT_Mile,"55908",-,-,-,0,TK_NotStart,01/02/2022,,01/02/2022,,"SI-----1-05 FS,SI-----1-05 SS","SI-----1-05,SI-----1-05","SI20TP-166& FS,SI20TPM15A6-20 FS","SI20TP-166&,SI20TPM15A6-20",78,,78,,18,,18,,47,3384,"HK1003 -Blackpoint D2 - Rev.0E DD30092021;TERMINAL POINTS;TEMPORARY TERMINAL POINTS DURING CONSTRUCTION PHASE"
1.15.2-8,SI-----5-23,"START OF CLIENTS OUTAGE AT EXISTING SCW PUMP HOUSE",5121,"HK1003-Rev.0E-3",TT_Mile,"55908",-,-,-,0,TK_NotStart,01/02/2022,,01/02/2022,,"SI20SD-120& SS","SI20SD-120&","SI20UQX5-45 FS,SI20UQZ5-158 FS,SI20UQY5-146 FS,SI20PAS6B15 FS","SI20UQX5-45,SI20UQZ5-158,SI20UQY5-146,SI20PAS6B15",78,,78,,18,,18,,47,600,"HK1003 -Blackpoint D2 - Rev.0E DD30092021;TERMINAL POINTS;TEMPORARY TERMINAL POINTS DURING CONSTRUCTION PHASE"
1.15.2-9,SI20TP-100&,"TP-M1A - FUEL GAS SUPPLY - PCI AND LNG BLEND",5121,"HK1003-Rev.0E-3",TT_Mile,"55908",-,-,-,0,TK_NotStart,12/07/2022,,12/07/2022,,"SI-----1-05 FS","SI-----1-05","SI20EKG6I15 SS,SI20EKG6H16 SS,SI20TP-101& FS,SI20TPM1A6-20 FS","SI20EKG6I15,SI20EKG6H16,SI20TP-101&,SI20TPM1A6-20",101,,101,,23,,23,,73,1432,"HK1003 -Blackpoint D2 - Rev.0E DD30092021;TERMINAL POINTS;TEMPORARY TERMINAL POINTS DURING CONSTRUCTION PHASE"
1.15.2-10,SI20TP-105&,"TP-M2C - FUEL OIL SUPPLY - STANDBY DIESEL GENERATOR",5121,"HK1003-Rev.0E-3",TT_Mile,"55908",-,-,-,0,TK_NotStart,17/09/2022,,17/09/2022,,"SI-----1-05 FS,SI-----1-05 SS","SI-----1-05,SI-----1-05","SI20TPM2C6-20 FS","SI20TPM2C6-20",111,,111,,25,,25,,81,1736,"HK1003 -Blackpoint D2 - Rev.0E DD30092021;TERMINAL POINTS;TEMPORARY TERMINAL POINTS DURING CONSTRUCTION PHASE"
1.15.2-11,SI20TP-115&,"TP-M4A - RESERVE FEED WATER SYSTEM",5121,"HK1003-Rev.0E-3",TT_Mile,"55908",-,-,-,0,TK_NotStart,18/05/2022,,18/05/2022,,"SI-----1-05 FS,SI-----1-05 SS","SI-----1-05,SI-----1-05","SI20TPM4A6-20 FS","SI20TPM4A6-20",93,,93,,21,,21,,65,2600,"HK1003 -Blackpoint D2 - Rev.0E DD30092021;TERMINAL POINTS;TEMPORARY TERMINAL POINTS DURING CONSTRUCTION PHASE"
1.15.2-12,SI20TP-120&,"TP-M7A - HYDROGEN SUPPLY",5121,"HK1003-Rev.0E-3",TT_Mile,"55908",-,-,-,0,TK_NotStart,18/06/2022,,18/06/2022,,"SI-----1-05 FS,SI-----1-05 SS","SI-----1-05,SI-----1-05","SI20TP-122& FS,SI20TP-121& FS,SI20TPM7A6-20 FS","SI20TP-122&,SI20TP-121&,SI20TPM7A6-20",98,,98,,22,,22,,70,2016,"HK1003 -Blackpoint D2 - Rev.0E DD30092021;TERMINAL POINTS;TEMPORARY TERMINAL POINTS DURING CONSTRUCTION PHASE"
1.15.2-13,SI20TP-130&,"TP-M9B - SERVICE AIR INTERCONNECTION TO BPPS SERVICE AIR SYSTEM",5121,"HK1003-Rev.0E-3",TT_Mile,"55908",-,-,-,0,TK_NotStart,18/05/2022,,18/05/2022,,"SI-----1-05 FS,SI-----1-05 SS","SI-----1-05,SI-----1-05","SI20TPM9B6-20 FS","SI20TPM9B6-20",93,,93,,21,,21,,65,2264,"HK1003 -Blackpoint D2 - Rev.0E DD30092021;TERMINAL POINTS;TEMPORARY TERMINAL POINTS DURING CONSTRUCTION PHASE"
1.15.2-14,SI20TP-133&,"TP-M13A - FIRST UREA TANK 10HSJ20BB001 - LIQUID UREA SUPPLY",5121,"HK1003-Rev.0E-3",TT_Mile,"55908",-,-,-,0,TK_NotStart,01/07/2022,,01/07/2022,,"SI-----1-05 FS,SI-----1-05 SS","SI-----1-05,SI-----1-05","SI20TP-135& FS,SI20TP-134& FS,SI20HSJ6A15 FS,SI20TPM13A6-20 FS","SI20TP-135&,SI20TP-134&,SI20HSJ6A15,SI20TPM13A6-20",99,,99,,23,,23,,72,1744,"HK1003 -Blackpoint D2 - Rev.0E DD30092021;TERMINAL POINTS;TEMPORARY TERMINAL POINTS DURING CONSTRUCTION PHASE"
1.15.2-15,SI20TP-259&,"TP-E2 - D2 6.6kV INTERCONNECTIORS (D2 Site)",5121,"HK1003-Rev.0E-3",TT_Mile,"55908",-,-,-,0,TK_NotStart,22/07/2022,,22/07/2022,,"SI-----1-05 FS,SI-----1-05 SS,SI20UBA7C-15 FS","SI-----1-05,SI-----1-05,SI20UBA7C-15","SI20TPE2A7-20 FS","SI20TPE2A7-20",102,,102,,24,,24,,74,2184,"HK1003 -Blackpoint D2 - Rev.0E DD30092021;TERMINAL POINTS;TEMPORARY TERMINAL POINTS DURING CONSTRUCTION PHASE"
1.15.2-16,SI20TP-122&,"TP-M8A - CARBON DIOXIDE SUPPLY",5121,"HK1003-Rev.0E-3",TT_Mile,"55908",-,-,-,0,TK_NotStart,18/06/2022,,18/06/2022,,"SI20TP-120& FS,SI-----1-05 FS","SI20TP-120&,SI-----1-05","SI20TP-129& FS,SI20TPM8A6-20 FS","SI20TP-129&,SI20TPM8A6-20",98,,98,,22,,22,,70,2016,"HK1003 -Blackpoint D2 - Rev.0E DD30092021;TERMINAL POINTS;TEMPORARY TERMINAL POINTS DURING CONSTRUCTION PHASE"
1.15.2-17,SI20TP-129&,"TP-M9A - INSTRUMENT AIR INTERCONNECTION TO BPPS INSTRUMENT AIR SYSTEM",5121,"HK1003-Rev.0E-3",TT_Mile,"55908",-,-,-,0,TK_NotStart,18/06/2022,,18/06/2022,,"SI20TP-122& FS,SI-----1-05 FS","SI20TP-122&,SI-----1-05","SI20TPM9A6-20 FS","SI20TPM9A6-20",98,,98,,22,,22,,70,2016,"HK1003 -Blackpoint D2 - Rev.0E DD30092021;TERMINAL POINTS;TEMPORARY TERMINAL POINTS DURING CONSTRUCTION PHASE"
1.15.2-18,SI20TP-135&,"TP-M14A - SECOND UREA TANK 10HSJ22BB001 - LIQUID UREA SUPPLY",5121,"HK1003-Rev.0E-3",TT_Mile,"55908",-,-,-,0,TK_NotStart,01/07/2022,,01/07/2022,,"SI20TP-133& FS,SI-----1-05 FS","SI20TP-133&,SI-----1-05","SI20TP-136& FS,SI20HSJ6A15 FS,SI20TPM14A6-20 FS","SI20TP-136&,SI20HSJ6A15,SI20TPM14A6-20",99,,99,,23,,23,,72,1744,"HK1003 -Blackpoint D2 - Rev.0E DD30092021;TERMINAL POINTS;TEMPORARY TERMINAL POINTS DURING CONSTRUCTION PHASE"
1.15.2-19,SI20TP-131&,"TP-M10A - HYPOCHLORITE DOSING",5121,"HK1003-Rev.0E-3",TT_Mile,"55908",-,-,-,0,TK_NotStart,14/05/2022,,14/05/2022,,"SI-----1-05 FS,SI-----1-05 SS","SI-----1-05,SI-----1-05","SI20QC-6-15 FS,SI20TPM10A6-20 FS","SI20QC-6-15,SI20TPM10A6-20",93,,93,,21,,21,,65,2336,"HK1003 -Blackpoint D2 - Rev.0E DD30092021;TERMINAL POINTS;TEMPORARY TERMINAL POINTS DURING CONSTRUCTION PHASE"
1.15.2-20,SI20TP-118&,"TP-M6A - TOWNSWATER SERVICE SYSTEM (SERVICE WATER)",5121,"HK1003-Rev.0E-3",TT_Mile,"55908",-,-,-,0,TK_NotStart,16/08/2022,,16/08/2022,,"SI20TP-116& FS,SI-----1-05 FS","SI20TP-116&,SI-----1-05","SI20TP-119& FS,SI20TPM6A6-20 FS","SI20TP-119&,SI20TPM6A6-20",106,,106,,24,,24,,77,1424,"HK1003 -Blackpoint D2 - Rev.0E DD30092021;TERMINAL POINTS;TEMPORARY TERMINAL POINTS DURING CONSTRUCTION PHASE"
1.15.2-21,SI20TP-166&,"TP-M16A - COOLING TOWER BLOWDOWN DISCHARGE",5121,"HK1003-Rev.0E-3",TT_Mile,"55908",-,-,-,0,TK_NotStart,15/04/2022,,15/04/2022,,"SI20TP-140& FS,SI-----1-05 FS","SI20TP-140&,SI-----1-05","SI20TPM16A6-20 FS","SI20TPM16A6-20",88,,88,,20,,20,,58,2920,"HK1003 -Blackpoint D2 - Rev.0E DD30092021;TERMINAL POINTS;TEMPORARY TERMINAL POINTS DURING CONSTRUCTION PHASE"
1.15.2-22,SI20TP-167&,"TP-M17A - CLEAN LUBRICATING OIL SUPPY TO UNIT D1",5121,"HK1003-Rev.0E-3",TT_Mile,"55908",-,-,-,0,TK_NotStart,07/06/2022,,07/06/2022,,"SI-----1-05 FS","SI-----1-05","SI20TP-168& FS,SI20TPM17A6-20 FS","SI20TP-168&,SI20TPM17A6-20",96,,96,,22,,22,,69,1160,"HK1003 -Blackpoint D2 - Rev.0E DD30092021;TERMINAL POINTS;TEMPORARY TERMINAL POINTS DURING CONSTRUCTION PHASE"
1.15.2-23,SI20TP-168&,"TP-M18A - USED OIL RETURN FROM UNIT D1",5121,"HK1003-Rev.0E-3",TT_Mile,"55908",-,-,-,0,TK_NotStart,07/06/2022,,07/06/2022,,"SI20TP-167& FS,SI-----1-05 FS","SI20TP-167&,SI-----1-05","SI20UEY6-95 FS,SI20TPM18A6-20 FS","SI20UEY6-95,SI20TPM18A6-20",96,,96,,22,,22,,69,1160,"HK1003 -Blackpoint D2 - Rev.0E DD30092021;TERMINAL POINTS;TEMPORARY TERMINAL POINTS DURING CONSTRUCTION PHASE"
1.15.2-24,SI20TP-183&,"NOT APPLICABLE - TP-M24A - D2 EFFLUENT COLLECTION (various locations)",5121,"HK1003-Rev.0E-3",TT_Mile,"55908",-,-,-,0,TK_NotStart,07/08/2022,,07/08/2022,,"SI-----1-05 FS","SI-----1-05","SI20TPM24A6-20 FS","SI20TPM24A6-20",105,,105,,24,,24,,77,1272,"HK1003 -Blackpoint D2 - Rev.0E DD30092021;TERMINAL POINTS;TEMPORARY TERMINAL POINTS DURING CONSTRUCTION PHASE"
1.15.2-25,SI20TP-185&,"TP-M26A - CONNECTION IN D2 FOR FUTURE SUPPLY AND RECEIVAL OF AUXILIARY STEAM TO D1",5121,"HK1003-Rev.0E-3",TT_Mile,"55908",-,-,-,0,TK_NotStart,07/05/2022,,07/05/2022,,"SI-----1-05 FS","SI-----1-05","SI20TPM26A6-20 FS","SI20TPM26A6-20",92,,92,,21,,21,,63,2768,"HK1003 -Blackpoint D2 - Rev.0E DD30092021;TERMINAL POINTS;TEMPORARY TERMINAL POINTS DURING CONSTRUCTION PHASE"
1.15.2-26,SI20TP-186&,"TP-M28A - CONDENSATE POLISHING TREATMENT EXHAUSTED MIXED BED RESIN FROM D2",5121,"HK1003-Rev.0E-3",TT_Mile,"55908",-,-,-,0,TK_NotStart,04/05/2022,,04/05/2022,,"SI-----1-05 FS","SI-----1-05","SI20TPM28A6-20 FS","SI20TPM28A6-20",91,,91,,21,,21,,61,2040,"HK1003 -Blackpoint D2 - Rev.0E DD30092021;TERMINAL POINTS;TEMPORARY TERMINAL POINTS DURING CONSTRUCTION PHASE"
1.15.2-27,SI20TP-187&,"TP-M29A - CONDENSATE POLISHING TREATMENT REGENERATED MIXED BED RESIN SUPPLY PIPE CONN. TO D2",5121,"HK1003-Rev.0E-3",TT_Mile,"55908",-,-,-,0,TK_NotStart,04/05/2022,,04/05/2022,,"SI-----1-05 FS","SI-----1-05","SI20TPM29A6-20 FS","SI20TPM29A6-20",91,,91,,21,,21,,61,2040,"HK1003 -Blackpoint D2 - Rev.0E DD30092021;TERMINAL POINTS;TEMPORARY TERMINAL POINTS DURING CONSTRUCTION PHASE"
1.15.2-28,SI20TP-201&,"TP-C1A - STORM WATER CONNECTION",5121,"HK1003-Rev.0E-3",TT_Mile,"55908",-,-,-,0,TK_NotStart,01/10/2021,,01/10/2021,,"SI-----1-05 FS","SI-----1-05","SI20TPC1A6-20 FS","SI20TPC1A6-20",60,,60,,14,,14,,31,4064,"HK1003 -Blackpoint D2 - Rev.0E DD30092021;TERMINAL POINTS;TEMPORARY TERMINAL POINTS DURING CONSTRUCTION PHASE"
1.15.2-29,SI20TP-190&,"TP-F1A - FIRE FIGHTING FRESH WATER SUPPLY",5121,"HK1003-Rev.0E-3",TT_Mile,"55908",-,-,-,0,TK_NotStart,04/05/2022,,04/05/2022,,"SI-----1-05 FS","SI-----1-05","SI20SGA6A26 FS,SI20TPF1A6-20 FS","SI20SGA6A26,SI20TPF1A6-20",91,,91,,21,,21,,61,424,"HK1003 -Blackpoint D2 - Rev.0E DD30092021;TERMINAL POINTS;TEMPORARY TERMINAL POINTS DURING CONSTRUCTION PHASE"
1.15.2-30,SI20TP-193&,"TP-F2A - FIRE FIGHTING SEA WATER SUPPLY (various locations)",5121,"HK1003-Rev.0E-3",TT_Mile,"55908",-,-,-,0,TK_NotStart,04/05/2022,,04/05/2022,,"SI-----1-05 FS","SI-----1-05","SI20SGA6A26 FS,SI20SGA6A26 SS,SI20TPF2A6-20 FS","SI20SGA6A26,SI20SGA6A26,SI20TPF2A6-20",91,,91,,21,,21,,61,424,"HK1003 -Blackpoint D2 - Rev.0E DD30092021;TERMINAL POINTS;TEMPORARY TERMINAL POINTS DURING CONSTRUCTION PHASE"
1.15.2-31,SI20TP-101&,"TP-M1B - FUEL GAS SUPPLY - YOC/CNOOC",5121,"HK1003-Rev.0E-3",TT_Mile,"55908",-,-,-,0,TK_NotStart,19/07/2022,,19/07/2022,,"SI20TP-100& FS","SI20TP-100&","SI20TPM1B6-20 FS","SI20TPM1B6-20",102,,102,,23,,23,,74,1432,"HK1003 -Blackpoint D2 - Rev.0E DD30092021;TERMINAL POINTS;TEMPORARY TERMINAL POINTS DURING CONSTRUCTION PHASE"
1.15.2-32,SI20TP-117&,"TP-M5B - TOWNSWATER DOMESTIC SYSTEM (POTABLE WATER)",5121,"HK1003-Rev.0E-3",TT_Mile,"55908",-,-,-,0,TK_NotStart,26/11/2022,,26/11/2022,,"SI20TP-116& FS","SI20TP-116&","SI20TPM5B6-20 FS","SI20TPM5B6-20",121,,121,,28,,28,,86,1312,"HK1003 -Blackpoint D2 - Rev.0E DD30092021;TERMINAL POINTS;TEMPORARY TERMINAL POINTS DURING CONSTRUCTION PHASE"
1.15.2-33,SI20TP-119&,"TP-M6B - TOWNSWATER SERVICE SYSTEM (SERVICE WATER)",5121,"HK1003-Rev.0E-3",TT_Mile,"55908",-,-,-,0,TK_NotStart,16/08/2022,,16/08/2022,,"SI20TP-118& FS","SI20TP-118&","SI20TPM6B6-20 FS","SI20TPM6B6-20",106,,106,,24,,24,,77,1424,"HK1003 -Blackpoint D2 - Rev.0E DD30092021;TERMINAL POINTS;TEMPORARY TERMINAL POINTS DURING CONSTRUCTION PHASE"
1.15.2-34,SI20TP-121&,"TP-M7B - HYDROGEN SUPPLY",5121,"HK1003-Rev.0E-3",TT_Mile,"55908",-,-,-,0,TK_NotStart,07/10/2022,,07/10/2022,,"SI20TP-120& FS","SI20TP-120&","SI20TPM7B6-20 FS","SI20TPM7B6-20",113,,113,,26,,26,,82,1296,"HK1003 -Blackpoint D2 - Rev.0E DD30092021;TERMINAL POINTS;TEMPORARY TERMINAL POINTS DURING CONSTRUCTION PHASE"
1.15.2-35,SI20TP-134&,"TP-M13B - FIRST UREA TANK 10HSJ20BB001 - LIQUID UREA RETURN",5121,"HK1003-Rev.0E-3",TT_Mile,"55908",-,-,-,0,TK_NotStart,01/07/2022,,01/07/2022,,"SI20TP-133& FS","SI20TP-133&","SI20HSJ6A15 FS,SI20TPM13B6-20 FS","SI20HSJ6A15,SI20TPM13B6-20",99,,99,,23,,23,,72,1744,"HK1003 -Blackpoint D2 - Rev.0E DD30092021;TERMINAL POINTS;TEMPORARY TERMINAL POINTS DURING CONSTRUCTION PHASE"
1.15.2-36,SI20TP-136&,"TP-M14B - SECOND UREA TANK 10HSJ22BB001 - LIQUID UREA RETURN",5121,"HK1003-Rev.0E-3",TT_Mile,"55908",-,-,-,0,TK_NotStart,01/07/2022,,01/07/2022,,"SI20TP-135& FS","SI20TP-135&","SI20HSJ6A15 FS,SI20TPM14B6-20 FS","SI20HSJ6A15,SI20TPM14B6-20",99,,99,,23,,23,,72,1744,"HK1003 -Blackpoint D2 - Rev.0E DD30092021;TERMINAL POINTS;TEMPORARY TERMINAL POINTS DURING CONSTRUCTION PHASE"
1.15.2-37,SI20TP-169&,"NOT APPLICABLE - TP-M19A - D1 CCGT EFFLUENT FROM UGE NEUTRALISATION BASIN - 10LDR31/32AP001 (Option)",5121,"HK1003-Rev.0E-3",TT_Mile,"55908",-,-,-,0,TK_NotStart,04/05/2022,,04/05/2022,,"SI-----1-05 FS","SI-----1-05","SI20TPM19A6-20 FS","SI20TPM19A6-20",91,,91,,21,,21,,61,2600,"HK1003 -Blackpoint D2 - Rev.0E DD30092021;TERMINAL POINTS;TEMPORARY TERMINAL POINTS DURING CONSTRUCTION PHASE"
1.15.2-38,SI20TP-184&,"NOT APPLICABLE - TP-M25A -EFFLUENT TRANSFER PUMPS TO D1 SEAL PIT (Option)",5121,"HK1003-Rev.0E-3",TT_Mile,"55908",-,-,-,0,TK_NotStart,04/05/2022,,04/05/2022,,"SI-----1-05 FS","SI-----1-05","SI20TPM25A6-20 FS","SI20TPM25A6-20",91,,91,,21,,21,,61,2192,"HK1003 -Blackpoint D2 - Rev.0E DD30092021;TERMINAL POINTS;TEMPORARY TERMINAL POINTS DURING CONSTRUCTION PHASE"
1.15.2-39,SI20TP-170&,"NOT APPLICABLE - TP-M20A - D1 CCGT EFFLUENT FROM UHW PUMPS - 10GMH11/12AP001 (Option)",5121,"HK1003-Rev.0E-3",TT_Mile,"55908",-,-,-,0,TK_NotStart,25/07/2022,,25/07/2022,,"SI-----1-05 FS","SI-----1-05","SI20TPM20A6-20 FS","SI20TPM20A6-20",103,,103,,24,,24,,75,1712,"HK1003 -Blackpoint D2 - Rev.0E DD30092021;TERMINAL POINTS;TEMPORARY TERMINAL POINTS DURING CONSTRUCTION PHASE"
1.15.2-40,SI20TP-171&,"NOT APPLICABLE - TP-M21A - D1 CCGT EFFLUENT FROM UVM PUMPS - 10GVM11/12AP001SCR (Option)",5121,"HK1003-Rev.0E-3",TT_Mile,"55908",-,-,-,0,TK_NotStart,25/07/2022,,25/07/2022,,"SI-----1-05 FS","SI-----1-05","SI20TPM21A6-20 FS","SI20TPM21A6-20",103,,103,,24,,24,,75,1712,"HK1003 -Blackpoint D2 - Rev.0E DD30092021;TERMINAL POINTS;TEMPORARY TERMINAL POINTS DURING CONSTRUCTION PHASE"
1.15.2-41,SI20TP-172&,"NOT APPLICABLE - TP-M22A - D1 CCGT EFFLUENT FROM HRSG DRAINS PUMPS - 10LCL11/12AP001 (Option)",5121,"HK1003-Rev.0E-3",TT_Mile,"55908",-,-,-,0,TK_NotStart,20/10/2022,,20/10/2022,,"SI-----1-05 FS","SI-----1-05","SI20TPM22A6-20 FS","SI20TPM22A6-20",115,,115,,27,,27,,83,1016,"HK1003 -Blackpoint D2 - Rev.0E DD30092021;TERMINAL POINTS;TEMPORARY TERMINAL POINTS DURING CONSTRUCTION PHASE"
1.15.2-42,SI20TP-173&,"NOT APPLICABLE - TP-M23A - UTS CHEMICAL DOSING AREA - 10GME11/12AP001 (Option)",5121,"HK1003-Rev.0E-3",TT_Mile,"55908",-,-,-,0,TK_NotStart,25/07/2022,,25/07/2022,,"SI-----1-05 FS","SI-----1-05","SI20TPM23A6-20 FS","SI20TPM23A6-20",103,,103,,24,,24,,75,1712,"HK1003 -Blackpoint D2 - Rev.0E DD30092021;TERMINAL POINTS;TEMPORARY TERMINAL POINTS DURING CONSTRUCTION PHASE"
1.15.2-43,SI20TP-191&,"TP-F1B - FIRE FIGHTING FRESH WATER SUPPLY",5121,"HK1003-Rev.0E-3",TT_Mile,"55908",-,-,-,0,TK_NotStart,04/05/2022,,04/05/2022,,"SI-----1-05 FS","SI-----1-05","SI20TPF1B6-20 FS","SI20TPF1B6-20",91,,91,,21,,21,,61,1424,"HK1003 -Blackpoint D2 - Rev.0E DD30092021;TERMINAL POINTS;TEMPORARY TERMINAL POINTS DURING CONSTRUCTION PHASE"
1.15.2-44,SI20TP-192&,"TP-F1C - FIRE FIGHTING FRESH WATER SUPPLY",5121,"HK1003-Rev.0E-3",TT_Mile,"55908",-,-,-,0,TK_NotStart,04/05/2022,,04/05/2022,,"SI-----1-05 FS","SI-----1-05","SI20TPF1C6-20 FS","SI20TPF1C6-20",91,,91,,21,,21,,61,1424,"HK1003 -Blackpoint D2 - Rev.0E DD30092021;TERMINAL POINTS;TEMPORARY TERMINAL POINTS DURING CONSTRUCTION PHASE"
1.15.2-45,SI20TP-202&,"TP-C2A - STORM WATER CONNECTION",5121,"HK1003-Rev.0E-3",TT_Mile,"55908",-,-,-,0,TK_NotStart,29/03/2022,,29/03/2022,,"SI-----1-05 FS","SI-----1-05","SI20TPC2A6-20 FS","SI20TPC2A6-20",86,,86,,20,,20,,54,2656,"HK1003 -Blackpoint D2 - Rev.0E DD30092021;TERMINAL POINTS;TEMPORARY TERMINAL POINTS DURING CONSTRUCTION PHASE"
1.15.2-46,SI20TP-203&,"TP-C3A - STORM WATER CONNECTION",5121,"HK1003-Rev.0E-3",TT_Mile,"55908",-,-,-,0,TK_NotStart,14/02/2022,,14/02/2022,,"SI-----1-05 FS","SI-----1-05","SI20TPC3A6-20 FS","SI20TPC3A6-20",80,,80,,18,,18,,49,3000,"HK1003 -Blackpoint D2 - Rev.0E DD30092021;TERMINAL POINTS;TEMPORARY TERMINAL POINTS DURING CONSTRUCTION PHASE"
1.15.2-47,SI20TP-204&,"TP-C4A - STORM WATER CONNECTION",5121,"HK1003-Rev.0E-3",TT_Mile,"55908",-,-,-,0,TK_NotStart,06/01/2022,,06/01/2022,,"SI-----1-05 FS","SI-----1-05","SI20TPC4A6-20 FS","SI20TPC4A6-20",74,,74,,17,,17,,44,3312,"HK1003 -Blackpoint D2 - Rev.0E DD30092021;TERMINAL POINTS;TEMPORARY TERMINAL POINTS DURING CONSTRUCTION PHASE"
1.15.2-48,SI20TP-205&,"TP-C5A - STORM WATER CONNECTION",5121,"HK1003-Rev.0E-3",TT_Mile,"55908",-,-,-,0,TK_NotStart,05/05/2022,,05/05/2022,,"SI-----1-05 FS","SI-----1-05","SI20TPC5A6-20 FS","SI20TPC5A6-20",91,,91,,21,,21,,63,2360,"HK1003 -Blackpoint D2 - Rev.0E DD30092021;TERMINAL POINTS;TEMPORARY TERMINAL POINTS DURING CONSTRUCTION PHASE"
1.15.2-49,SI20TP-206&,"TP-C6A - STORM WATER CONNECTION FROM D1 EVA EXIS. DRAIN CHANNEL TO D2",5121,"HK1003-Rev.0E-3",TT_Mile,"55908",-,-,-,0,TK_NotStart,07/01/2022,,07/01/2022,,"SI-----1-05 FS","SI-----1-05","SI20TPC6A6-20 FS","SI20TPC6A6-20",74,,74,,17,,17,,44,3128,"HK1003 -Blackpoint D2 - Rev.0E DD30092021;TERMINAL POINTS;TEMPORARY TERMINAL POINTS DURING CONSTRUCTION PHASE"
1.15.2-50,SI20TP-207&,"TP-C7A - STORM WATER CONNECTION FROM PERIMETER TRENCH SUMP",5121,"HK1003-Rev.0E-3",TT_Mile,"55908",-,-,-,0,TK_NotStart,07/01/2022,,07/01/2022,,"SI-----1-05 FS","SI-----1-05","SI20TPC7A6-20 FS","SI20TPC7A6-20",74,,74,,17,,17,,44,3304,"HK1003 -Blackpoint D2 - Rev.0E DD30092021;TERMINAL POINTS;TEMPORARY TERMINAL POINTS DURING CONSTRUCTION PHASE"
1.15.2-51,SI20TP-208&,"TP-C8A - STORM WATER CONNECTION FROM PERIMETER TRENCH SUMP",5121,"HK1003-Rev.0E-3",TT_Mile,"55908",-,-,-,0,TK_NotStart,05/05/2022,,05/05/2022,,"SI-----1-05 FS","SI-----1-05","SI20TPC8A6-20 FS","SI20TPC8A6-20",91,,91,,21,,21,,63,2184,"HK1003 -Blackpoint D2 - Rev.0E DD30092021;TERMINAL POINTS;TEMPORARY TERMINAL POINTS DURING CONSTRUCTION PHASE"
1.15.2-52,SI20TP-209&,"TP-C9A - STORM WATER CONNECTION FROM PERIMETER TRENCH SUMP",5121,"HK1003-Rev.0E-3",TT_Mile,"55908",-,-,-,0,TK_NotStart,05/05/2022,,05/05/2022,,"SI-----1-05 FS","SI-----1-05","SI20TPC9A6-20 FS","SI20TPC9A6-20",91,,91,,21,,21,,63,2184,"HK1003 -Blackpoint D2 - Rev.0E DD30092021;TERMINAL POINTS;TEMPORARY TERMINAL POINTS DURING CONSTRUCTION PHASE"
1.15.2-53,SI20TP-210&,"TP-C10A - STORM WATER CONNECTION FROM PERIMETER TRENCH SUMP",5121,"HK1003-Rev.0E-3",TT_Mile,"55908",-,-,-,0,TK_NotStart,05/05/2022,,05/05/2022,,"SI-----1-05 FS","SI-----1-05","SI20TPC10A6-20 FS","SI20TPC10A6-20",91,,91,,21,,21,,63,2184,"HK1003 -Blackpoint D2 - Rev.0E DD30092021;TERMINAL POINTS;TEMPORARY TERMINAL POINTS DURING CONSTRUCTION PHASE"
1.15.2-54,SI20TP-262&,"TP-E7 - D2 OUTDOOR EARTHING GRID (D2 Site)",5121,"HK1003-Rev.0E-3",TT_Mile,"55908",-,-,-,0,TK_NotStart,28/02/2023,,28/02/2023,,"SI-----1-05 FS,SI20BAW5B15 FS","SI-----1-05,SI20BAW5B15","SI20TPE7A7-17 FS","SI20TPE7A7-17",134,,134,,31,,31,,92,2344,"HK1003 -Blackpoint D2 - Rev.0E DD30092021;TERMINAL POINTS;TEMPORARY TERMINAL POINTS DURING CONSTRUCTION PHASE"
1.15.2-55,SI20TP-258&,"TP-E3 - D2 6.6kV INTERCONNECTIORS (D2 Site)",5121,"HK1003-Rev.0E-3",TT_Mile,"55908",-,-,-,0,TK_NotStart,27/12/2022,,27/12/2022,,"SI-----1-05 FS","SI-----1-05","SI20TPE3A7-20 FS,SI20BZK7-49 FS","SI20TPE3A7-20,SI20BZK7-49",125,,125,,29,,29,,88,64,"HK1003 -Blackpoint D2 - Rev.0E DD30092021;TERMINAL POINTS;TEMPORARY TERMINAL POINTS DURING CONSTRUCTION PHASE"
1.15.2-56,SI20--2-10&,"SITE WALKDOWN - GENERAL ITEMS",5121,"HK1003-Rev.0E-3",TT_Mile,"55908",-,-,-,100,TK_Complete,08/08/2020,08/08/2020,08/08/2020,08/08/2020,"SI-----1-01 FS","SI-----1-01","SI20--2-20& FS","SI20--2-20&",1,1,1,1,0,0,0,0,0,,"HK1003 -Blackpoint D2 - Rev.0E DD30092021;TERMINAL POINTS;TEMPORARY TERMINAL POINTS DURING CONSTRUCTION PHASE"
1.15.2-57,SI20--2-30&,"SITE WALKDOWN -  ELECTRICAL / I&C INTERFACES",5121,"HK1003-Rev.0E-3",TT_Mile,"55908",-,-,-,100,TK_Complete,03/02/2021,03/02/2021,03/02/2021,03/02/2021,"SI-----1-01 FS,SI-----1-05 FS","SI-----1-01,SI-----1-05","SI20--2-35& FS,SI-----1-09 FS","SI20--2-35&,SI-----1-09",26,26,26,26,6,6,6,6,4,,"HK1003 -Blackpoint D2 - Rev.0E DD30092021;TERMINAL POINTS;TEMPORARY TERMINAL POINTS DURING CONSTRUCTION PHASE"
1.15.2-58,SI20--2-40&,"SITE WALKDOWN -  CONTROL ROOM / C4 STATION",5121,"HK1003-Rev.0E-3",TT_Mile,"55908",-,-,-,100,TK_Complete,03/03/2021,03/03/2021,03/03/2021,03/03/2021,"SI-----1-01 FS,SI-----1-05 FS","SI-----1-01,SI-----1-05","SI20--2-45& FS,SI-----1-09 FS","SI20--2-45&,SI-----1-09",30,30,30,30,7,7,7,7,5,,"HK1003 -Blackpoint D2 - Rev.0E DD30092021;TERMINAL POINTS;TEMPORARY TERMINAL POINTS DURING CONSTRUCTION PHASE"
1.15.2-59,SI20--2-35&,"SITE WALKDOWN -  MECHANICAL INTERFACES",5121,"HK1003-Rev.0E-3",TT_Mile,"55908",-,-,-,100,TK_Complete,09/02/2021,09/02/2021,09/02/2021,09/02/2021,"SI20--2-30& FS,SI-----1-01 FS,SI-----1-05 FS","SI20--2-30&,SI-----1-01,SI-----1-05","SI-----1-09 FS","SI-----1-09",27,27,27,27,6,6,6,6,4,,"HK1003 -Blackpoint D2 - Rev.0E DD30092021;TERMINAL POINTS;TEMPORARY TERMINAL POINTS DURING CONSTRUCTION PHASE"
1.15.2-60,SI20--2-15&,"SITE WALKDOWN - SCW PUMP HOUSE 1/3",5121,"HK1003-Rev.0E-3",TT_Mile,"55908",-,-,-,100,TK_Complete,04/09/2020,04/09/2020,04/09/2020,04/09/2020,"SI-----1-01 FS","SI-----1-01","SI-----1-09 FS","SI-----1-09",4,4,4,4,1,1,1,1,0,,"HK1003 -Blackpoint D2 - Rev.0E DD30092021;TERMINAL POINTS;TEMPORARY TERMINAL POINTS DURING CONSTRUCTION PHASE"
1.15.2-61,SI20--2-45&,"SITE WALKDOWN -  CONTROL ROOM / C4 STATION",5121,"HK1003-Rev.0E-3",TT_Mile,"55908",-,-,-,100,TK_Complete,19/04/2021,19/04/2021,19/04/2021,19/04/2021,"SI20--2-40& FS,SI-----1-01 FS,SI-----1-05 FS","SI20--2-40&,SI-----1-01,SI-----1-05","SI-----1-09 FS","SI-----1-09",37,37,37,37,8,8,8,8,9,,"HK1003 -Blackpoint D2 - Rev.0E DD30092021;TERMINAL POINTS;TEMPORARY TERMINAL POINTS DURING CONSTRUCTION PHASE"
1.15.2-62,SI20--2-20&,"SITE WALKDOWN - SCW PUMP HOUSE 2/3",5121,"HK1003-Rev.0E-3",TT_Mile,"55908",-,-,-,100,TK_Complete,09/09/2020,09/09/2020,09/09/2020,09/09/2020,"SI20--2-10& FS,SI-----1-01 FS","SI20--2-10&,SI-----1-01","SI-----1-09 FS","SI-----1-09",5,5,5,5,1,1,1,1,0,,"HK1003 -Blackpoint D2 - Rev.0E DD30092021;TERMINAL POINTS;TEMPORARY TERMINAL POINTS DURING CONSTRUCTION PHASE"
1.15.2-63,SI20--2-25&,"SITE WALKDOWN - SCW PUMP HOUSE 3/3",5121,"HK1003-Rev.0E-3",TT_Mile,"55908",-,-,-,100,TK_Complete,12/10/2020,12/10/2020,12/10/2020,12/10/2020,"SI-----1-01 FS","SI-----1-01","SI-----1-09 FS","SI-----1-09",10,10,10,10,2,2,2,2,0,,"HK1003 -Blackpoint D2 - Rev.0E DD30092021;TERMINAL POINTS;TEMPORARY TERMINAL POINTS DURING CONSTRUCTION PHASE"
1.16,55903,"OWNER INPUT (PERMITS / APPROVALS, CONSUMABLES BY SSE)",5121,"HK1003-Rev.0E-3",WBS,"55902",,,,100,Complete,16/04/2021,16/04/2021,16/04/2021,,,,,,36,36,36,,8,8,8,,,,"HK1003 -Blackpoint D2 - Rev.0E DD30092021"
1.16.1,55906,"CONSUMABLES",5121,"HK1003-Rev.0E-3",WBS,"55903",,,,,NotStart,,,,,,,,,,,,,,,,,,,"HK1003 -Blackpoint D2 - Rev.0E DD30092021;OWNER INPUT (PERMITS / APPROVALS, CONSUMABLES BY SSE)"
1.16.2,55905,"APPROVALS",5121,"HK1003-Rev.0E-3",WBS,"55903",,,,100,Complete,16/04/2021,16/04/2021,16/04/2021,16/04/2021,,,,,36,36,36,36,8,8,8,8,,,"HK1003 -Blackpoint D2 - Rev.0E DD30092021;OWNER INPUT (PERMITS / APPROVALS, CONSUMABLES BY SSE)"
1.16.2-1,SI-P221-5&,"BD - SUBMISSION - TURBOSET DETAIL DESIGN - PRELIMINARY - 20UMC",5121,"HK1003-Rev.0E-3",TT_Mile,"55905",-,-,-,100,TK_Complete,16/04/2021,16/04/2021,16/04/2021,16/04/2021,"SI-----1-05 FS,SI-P221-365&1 FS","SI-----1-05,SI-P221-365&1","SI--UMC2A04 FS","SI--UMC2A04",36,36,36,36,8,8,8,8,9,,"HK1003 -Blackpoint D2 - Rev.0E DD30092021;OWNER INPUT (PERMITS / APPROVALS, CONSUMABLES BY SSE);APPROVALS"
1.16.3,55904,"PERMITS",5121,"HK1003-Rev.0E-3",WBS,"55903",,,,,NotStart,,,,,,,,,,,,,,,,,,,"HK1003 -Blackpoint D2 - Rev.0E DD30092021;OWNER INPUT (PERMITS / APPROVALS, CONSUMABLES BY SSE)"
