ID,Activity ID,Activity Name,Project ID,Project Name,Activity type,Parent WBS ID,Resources,Resource IDs,Primary Resource,Schedule % Complete,Activity Status,Planned Start,Actual Start,Planned Finish,Actual Finish,Predecessor Details,Predecessors,Successor Details,Successors,Project Week Planned Start,Project Week Actual Start,Project Week Planned Finish,Project Week Actual Finish,Project Month Planned Start,Project Month Actual Start,Project Month Planned Finish,Project Month Actual Finish,Activity nth Percentile Rank by Start Date,Total Float,Full Path,In Degree Original,Out Degree Original,Betweeness Centrality Original,Forward Reach Original,Reverse Reach Original,Duration Original,Critical Path Index Original,Page Rank Original,In Degree Normalized,Out Degree Normalized,Betweeness Centrality Normalized,Forward Reach Normalized,Reverse Reach Normalized,Duration Normalized,Critical Path Index Normalized,Page Rank Normalized
1,58232,"CCGT D1_Integrated Programme Schedule",7112,"CCGTD1_IPS",WBS,"62091",,,,100,Complete,29/07/2015,14/11/2014,31/05/2022,,,,,,0,0,356,,0,0,83,,,,""
1.1,58803,"EWC - Early Civil Works",7112,"CCGTD1_IPS",WBS,"58232",,,,100,Complete,29/07/2015,29/07/2015,14/10/2021,30/09/2017,,,,,0,36,324,150,0,8,75,35,,,"CCGT D1_Integrated Programme Schedule"
1.1.1,62087,"Construction",7112,"CCGTD1_IPS",WBS,"58803",,,,100,Complete,01/06/2021,08/11/2016,14/10/2021,30/09/2017,,,,,304,103,324,150,71,24,75,35,,,"CCGT D1_Integrated Programme Schedule;EWC - Early Civil Works"
1.1.1.1,62089,"Piling Works for Power Island (Turbine Hall and HRSG)",7112,"CCGTD1_IPS",WBS,"62087",,,,100,Complete,01/06/2021,08/11/2016,14/10/2021,30/09/2017,,,,,304,103,324,150,71,24,75,35,,,"CCGT D1_Integrated Programme Schedule;EWC - Early Civil Works;Construction"
1.1.1.1-1,CS.1075,"Construct Trials & Test for BD inspection and acknowledgement",7112,"CCGTD1_IPS",TT_Task,"62089",-,-,-,100,TK_Complete,01/06/2021,08/11/2016,18/06/2021,23/11/2016,"","","","",304,103,307,105,71,24,71,24,97,,"CCGT D1_Integrated Programme Schedule;EWC - Early Civil Works;Construction;Piling Works for Power Island (Turbine Hall and HRSG)",0,0,0.0,0.0,0.0,17,1.0,0.0000812387,0.0,0.0,0.0,0.0,0.0,0.0381165919,1.0,0.0
1.1.1.1-2,A4090,"Turbine Hall (Driven Piles)",7112,"CCGTD1_IPS",TT_Task,"62089",-,-,-,100,TK_Complete,01/06/2021,20/12/2016,14/10/2021,04/05/2017,"","","","",304,109,324,128,71,25,75,30,97,,"CCGT D1_Integrated Programme Schedule;EWC - Early Civil Works;Construction;Piling Works for Power Island (Turbine Hall and HRSG)",0,0,0.0,0.0,0.0,135,1.0,0.0000812387,0.0,0.0,0.0,0.0,0.0,0.302690583,1.0,0.0
1.1.1.1-3,A4095,"Site Drainage A&A works & Site Demob",7112,"CCGTD1_IPS",TT_Task,"62089",-,-,-,100,TK_Complete,01/06/2021,20/12/2016,07/06/2021,30/09/2017,"","","S1010 FF","S1010",304,109,305,150,71,25,71,35,97,,"CCGT D1_Integrated Programme Schedule;EWC - Early Civil Works;Construction;Piling Works for Power Island (Turbine Hall and HRSG)",0,0,0.0,0.0,0.0,6,0.0,0.0000812387,0.0,0.0,0.0,0.0,0.0,0.0134529148,0.0,0.0
1.1.1.1-4,A4100,"Turbine Hall (Pre-Bore Socket H-Piles)",7112,"CCGTD1_IPS",TT_Task,"62089",-,-,-,100,TK_Complete,01/06/2021,20/12/2016,12/07/2021,06/05/2017,"","","","",304,109,310,129,71,25,72,30,97,,"CCGT D1_Integrated Programme Schedule;EWC - Early Civil Works;Construction;Piling Works for Power Island (Turbine Hall and HRSG)",0,0,0.0,0.0,0.0,41,0.0,0.0000812387,0.0,0.0,0.0,0.0,0.0,0.0919282511,0.0,0.0
1.1.1.1-5,A4110,"HRSG (Driven H-Piles)",7112,"CCGTD1_IPS",TT_Task,"62089",-,-,-,100,TK_Complete,01/06/2021,20/12/2016,09/07/2021,04/05/2017,"","","","",304,109,310,128,71,25,72,30,98,,"CCGT D1_Integrated Programme Schedule;EWC - Early Civil Works;Construction;Piling Works for Power Island (Turbine Hall and HRSG)",0,0,0.0,0.0,0.0,38,0.0,0.0000812387,0.0,0.0,0.0,0.0,0.0,0.0852017937,0.0,0.0
1.1.1.1-6,A4120,"Post Drilling / BD Selection / Load Tests / BD Consent for Pile Cap",7112,"CCGTD1_IPS",TT_Task,"62089",-,-,-,100,TK_Complete,01/06/2021,09/05/2017,23/07/2021,30/06/2017,"","","","",304,129,312,137,71,30,72,31,98,,"CCGT D1_Integrated Programme Schedule;EWC - Early Civil Works;Construction;Piling Works for Power Island (Turbine Hall and HRSG)",0,0,0.0,0.0,0.0,52,1.0,0.0000812387,0.0,0.0,0.0,0.0,0.0,0.1165919283,1.0,0.0
1.1.1.2,62088,"Warehouse partial demolition works and A&A Works",7112,"CCGTD1_IPS",WBS,"62087",,,,100,Complete,01/06/2021,16/12/2016,09/09/2021,21/04/2017,,,,,304,109,319,127,71,25,74,29,,,"CCGT D1_Integrated Programme Schedule;EWC - Early Civil Works;Construction"
1.1.1.2-1,CS.1060,"Warehouse Demolition works",7112,"CCGTD1_IPS",TT_Task,"62088",-,-,-,100,TK_Complete,01/06/2021,16/12/2016,05/07/2021,17/01/2017,"","","","",304,109,309,113,71,25,72,26,97,,"CCGT D1_Integrated Programme Schedule;EWC - Early Civil Works;Construction;Warehouse partial demolition works and A&A Works",0,0,0.0,0.0,0.0,34,1.0,0.0000812387,0.0,0.0,0.0,0.0,0.0,0.0762331839,1.0,0.0
1.1.1.2-2,CS.1070,"Warehouse A&A Works, ready for main contract fitout (150 Days - 14/5/2017)",7112,"CCGTD1_IPS",TT_Task,"62088",-,-,-,100,TK_Complete,01/06/2021,18/01/2017,09/09/2021,21/04/2017,"","","","",304,113,319,127,71,26,74,29,97,,"CCGT D1_Integrated Programme Schedule;EWC - Early Civil Works;Construction;Warehouse partial demolition works and A&A Works",0,0,0.0,0.0,0.0,100,1.0,0.0000812387,0.0,0.0,0.0,0.0,0.0,0.2242152466,1.0,0.0
1.1.2,58901,"Site Preparation, Advance Works and Piling Works",7112,"CCGTD1_IPS",WBS,"58803",,,,100,Complete,29/07/2015,29/07/2015,03/07/2017,21/06/2017,,,,,0,36,100,135,0,8,23,31,,,"CCGT D1_Integrated Programme Schedule;EWC - Early Civil Works"
1.1.2.1,58902,"Statutory Submissions",7112,"CCGTD1_IPS",WBS,"58901",,,,100,Complete,29/07/2015,29/07/2015,03/07/2017,21/06/2017,,,,,0,36,100,135,0,8,23,31,,,"CCGT D1_Integrated Programme Schedule;EWC - Early Civil Works;Site Preparation, Advance Works and Piling Works"
1.1.2.1.1,58909,"Piling Works for Power Island (Turbine Hall and HRSG)",7112,"CCGTD1_IPS",WBS,"58902",,,,100,Complete,01/12/2015,01/12/2015,03/07/2017,21/06/2017,,,,,17,54,100,135,4,12,23,31,,,"CCGT D1_Integrated Programme Schedule;EWC - Early Civil Works;Site Preparation, Advance Works and Piling Works;Statutory Submissions"
1.1.2.1.1.1,58911,"BD Review and Approval",7112,"CCGTD1_IPS",WBS,"58909",,,,100,Complete,29/01/2016,29/01/2016,03/07/2017,21/06/2017,,,,,26,63,100,135,6,14,23,31,,,"CCGT D1_Integrated Programme Schedule;EWC - Early Civil Works;Site Preparation, Advance Works and Piling Works;Statutory Submissions;Piling Works for Power Island (Turbine Hall and HRSG)"
1.1.2.1.1.1-1,SS.3010,"Power Island Piling - 1st Submission",7112,"CCGTD1_IPS",TT_Task,"58911",-,-,-,100,TK_Complete,01/02/2016,29/01/2016,18/04/2016,24/03/2016,"SS.3220 FS","SS.3220","SS.3050 FS,SS.3170 FS","SS.3050,SS.3170",26,63,37,70,6,14,8,16,0,,"CCGT D1_Integrated Programme Schedule;EWC - Early Civil Works;Site Preparation, Advance Works and Piling Works;Statutory Submissions;Piling Works for Power Island (Turbine Hall and HRSG);BD Review and Approval",1,2,0.0000001656,0.0008138352,0.0002034588,77,1.0,0.0001503957,0.0068493151,0.0061538462,0.00025,0.0020887728,0.0006435006,0.1726457399,1.0,0.0283369572
1.1.2.1.1.1-2,SS.3050,"Power Island Piling - Amendment",7112,"CCGTD1_IPS",TT_Task,"58911",-,-,-,100,TK_Complete,09/08/2016,09/08/2016,21/09/2016,09/09/2016,"SS.3010 FS","SS.3010","SS.3080 FS","SS.3080",53,90,60,95,12,21,14,22,0,,"CCGT D1_Integrated Programme Schedule;EWC - Early Civil Works;Site Preparation, Advance Works and Piling Works;Statutory Submissions;Piling Works for Power Island (Turbine Hall and HRSG);BD Review and Approval",1,1,0.0000000828,0.0002034588,0.0004069176,43,1.0,0.0001598706,0.0068493151,0.0030769231,0.000125,0.0005221932,0.0012870013,0.0964125561,1.0,0.0322192488
1.1.2.1.1.1-3,SS.3110,"BA14 submission & pile test",7112,"CCGTD1_IPS",TT_Task,"58911",-,-,-,100,TK_Complete,25/05/2017,25/05/2017,03/07/2017,21/06/2017,"","","","",95,131,100,135,22,30,23,31,5,,"CCGT D1_Integrated Programme Schedule;EWC - Early Civil Works;Site Preparation, Advance Works and Piling Works;Statutory Submissions;Piling Works for Power Island (Turbine Hall and HRSG);BD Review and Approval",0,0,0.0,0.0,0.0,39,1.0,0.0000812387,0.0,0.0,0.0,0.0,0.0,0.0874439462,1.0,0.0
1.1.2.1.1.1-4,SS.3080,"Power Island Piling - Consent",7112,"CCGTD1_IPS",TT_Task,"58911",-,-,-,100,TK_Complete,12/09/2016,09/09/2016,11/11/2016,25/10/2016,"SS.3050 FS","SS.3050","","",58,95,67,101,13,22,15,23,0,,"CCGT D1_Integrated Programme Schedule;EWC - Early Civil Works;Site Preparation, Advance Works and Piling Works;Statutory Submissions;Piling Works for Power Island (Turbine Hall and HRSG);BD Review and Approval",1,0,0.0,0.0,0.0006103764,60,1.0,0.0002173423,0.0068493151,0.0,0.0,0.0,0.0019305019,0.134529148,1.0,0.0557681979
1.1.2.1.1.1-5,SS.3120,"Piling 1st Submission",7112,"CCGTD1_IPS",TT_Task,"58911",-,-,-,100,TK_Complete,29/01/2016,29/01/2016,28/03/2016,24/03/2016,"","","","",26,63,34,70,6,14,8,16,0,,"CCGT D1_Integrated Programme Schedule;EWC - Early Civil Works;Site Preparation, Advance Works and Piling Works;Statutory Submissions;Piling Works for Power Island (Turbine Hall and HRSG);BD Review and Approval",0,0,0.0,0.0,0.0,59,1.0,0.0000812387,0.0,0.0,0.0,0.0,0.0,0.1322869955,1.0,0.0
1.1.2.1.1.1-6,SS.3130,"Piling 1st  Amendment",7112,"CCGTD1_IPS",TT_Task,"58911",-,-,-,100,TK_Complete,09/08/2016,09/08/2016,15/09/2016,09/09/2016,"","","","",53,90,59,95,12,21,13,22,0,,"CCGT D1_Integrated Programme Schedule;EWC - Early Civil Works;Site Preparation, Advance Works and Piling Works;Statutory Submissions;Piling Works for Power Island (Turbine Hall and HRSG);BD Review and Approval",0,0,0.0,0.0,0.0,37,1.0,0.0000812387,0.0,0.0,0.0,0.0,0.0,0.0829596413,1.0,0.0
1.1.2.1.1.1-7,SS.3230,"Piling 2nd Amendment",7112,"CCGTD1_IPS",TT_Task,"58911",-,-,-,100,TK_Complete,07/11/2016,07/11/2016,07/12/2016,02/12/2016,"","","","",66,103,71,107,15,24,16,24,0,,"CCGT D1_Integrated Programme Schedule;EWC - Early Civil Works;Site Preparation, Advance Works and Piling Works;Statutory Submissions;Piling Works for Power Island (Turbine Hall and HRSG);BD Review and Approval",0,0,0.0,0.0,0.0,30,1.0,0.0000812387,0.0,0.0,0.0,0.0,0.0,0.067264574,1.0,0.0
1.1.2.1.1.1-8,SS.3250,"Piling 3rd Amendment",7112,"CCGTD1_IPS",TT_Task,"58911",-,-,-,100,TK_Complete,21/02/2017,21/02/2017,24/03/2017,21/03/2017,"","","","",81,118,86,122,19,27,20,28,2,,"CCGT D1_Integrated Programme Schedule;EWC - Early Civil Works;Site Preparation, Advance Works and Piling Works;Statutory Submissions;Piling Works for Power Island (Turbine Hall and HRSG);BD Review and Approval",0,0,0.0,0.0,0.0,31,1.0,0.0000812387,0.0,0.0,0.0,0.0,0.0,0.0695067265,1.0,0.0
1.1.2.1.1.1-9,SS.3270,"Piling 4th Amendment",7112,"CCGTD1_IPS",TT_Task,"58911",-,-,-,100,TK_Complete,21/03/2017,21/03/2017,14/04/2017,12/04/2017,"","","","",85,122,89,125,20,28,20,29,3,,"CCGT D1_Integrated Programme Schedule;EWC - Early Civil Works;Site Preparation, Advance Works and Piling Works;Statutory Submissions;Piling Works for Power Island (Turbine Hall and HRSG);BD Review and Approval",0,0,0.0,0.0,0.0,24,1.0,0.0000812387,0.0,0.0,0.0,0.0,0.0,0.0538116592,1.0,0.0
1.1.2.1.1.1-10,SS.3300,"Piling 5th Amendment",7112,"CCGTD1_IPS",TT_Task,"58911",-,-,-,100,TK_Complete,02/05/2017,02/05/2017,22/05/2017,19/05/2017,"","","","",91,128,94,131,21,30,22,30,5,,"CCGT D1_Integrated Programme Schedule;EWC - Early Civil Works;Site Preparation, Advance Works and Piling Works;Statutory Submissions;Piling Works for Power Island (Turbine Hall and HRSG);BD Review and Approval",0,0,0.0,0.0,0.0,20,1.0,0.0000812387,0.0,0.0,0.0,0.0,0.0,0.0448430493,1.0,0.0
1.1.2.1.1.2,58910,"Design / Submission Preparation",7112,"CCGTD1_IPS",WBS,"58909",,,,100,Complete,01/12/2015,01/12/2015,19/02/2016,28/01/2016,,,,,17,54,29,62,4,12,6,14,,,"CCGT D1_Integrated Programme Schedule;EWC - Early Civil Works;Site Preparation, Advance Works and Piling Works;Statutory Submissions;Piling Works for Power Island (Turbine Hall and HRSG)"
1.1.2.1.1.2-1,SS.3220,"Prepare Power Island Piling Submission",7112,"CCGTD1_IPS",TT_Task,"58910",-,-,-,100,TK_Complete,01/12/2015,01/12/2015,19/02/2016,28/01/2016,"","","SS.3010 FS","SS.3010",17,54,29,62,4,12,6,14,0,,"CCGT D1_Integrated Programme Schedule;EWC - Early Civil Works;Site Preparation, Advance Works and Piling Works;Statutory Submissions;Piling Works for Power Island (Turbine Hall and HRSG);Design / Submission Preparation",0,1,0.0,0.001017294,0.0,80,1.0,0.0000812387,0.0,0.0030769231,0.0,0.0026109661,0.0,0.1793721973,1.0,0.0
1.1.2.1.2,58906,"Warehouse partial demolition and A&A Works",7112,"CCGTD1_IPS",WBS,"58902",,,,100,Complete,29/07/2015,29/07/2015,03/11/2016,28/04/2017,,,,,0,36,66,128,0,8,15,29,,,"CCGT D1_Integrated Programme Schedule;EWC - Early Civil Works;Site Preparation, Advance Works and Piling Works;Statutory Submissions"
1.1.2.1.2.1,58908,"BD Review and Approval",7112,"CCGTD1_IPS",WBS,"58906",,,,100,Complete,03/11/2015,03/11/2015,03/11/2016,28/04/2017,,,,,13,50,66,128,3,11,15,29,,,"CCGT D1_Integrated Programme Schedule;EWC - Early Civil Works;Site Preparation, Advance Works and Piling Works;Statutory Submissions;Warehouse partial demolition and A&A Works"
1.1.2.1.2.1-1,SS.3060,"Warehouse demolition and A&A works (GBP) - Amendment Submission",7112,"CCGTD1_IPS",TT_Task,"58908",-,-,-,100,TK_Complete,01/09/2016,25/08/2016,12/10/2016,04/10/2016,"SS.3000 FS,SS.3190 FS","SS.3000,SS.3190","SS.3070 FS","SS.3070",57,92,63,98,13,21,14,23,0,,"CCGT D1_Integrated Programme Schedule;EWC - Early Civil Works;Site Preparation, Advance Works and Piling Works;Statutory Submissions;Warehouse partial demolition and A&A Works;BD Review and Approval",2,1,0.0000000621,0.0002034588,0.0006103764,41,1.0,0.0001798199,0.0136986301,0.0030769231,0.00009375,0.0005221932,0.0019305019,0.0919282511,1.0,0.0403934486
1.1.2.1.2.1-2,SS.3000,"Warehouse demolition and A&A works (GBP & Structural) - 1st Submission",7112,"CCGTD1_IPS",TT_Task,"58908",-,-,-,100,TK_Complete,03/11/2015,03/11/2015,05/01/2016,28/12/2015,"SS.3180 FS","SS.3180","SS.3060 FS,SS.3061 FS","SS.3060,SS.3061",13,50,22,58,3,11,5,13,0,,"CCGT D1_Integrated Programme Schedule;EWC - Early Civil Works;Site Preparation, Advance Works and Piling Works;Statutory Submissions;Warehouse partial demolition and A&A Works;BD Review and Approval",1,2,0.0000001242,0.0006103764,0.0002034588,63,1.0,0.0001503957,0.0068493151,0.0061538462,0.0001875,0.0015665796,0.0006435006,0.1412556054,1.0,0.0283369572
1.1.2.1.2.1-3,SS.3070,"Warehouse demolition and A&A works - Consent",7112,"CCGTD1_IPS",TT_Task,"58908",-,-,-,100,TK_Complete,26/09/2016,20/10/2016,03/11/2016,21/11/2016,"SS.3060 FS,SS.3061 FS","SS.3060,SS.3061","","",60,100,66,105,14,23,15,24,0,,"CCGT D1_Integrated Programme Schedule;EWC - Early Civil Works;Site Preparation, Advance Works and Piling Works;Statutory Submissions;Warehouse partial demolition and A&A Works;BD Review and Approval",2,0,0.0,0.0,0.001017294,38,1.0,0.0003873839,0.0136986301,0.0,0.0,0.0,0.0032175032,0.0852017937,1.0,0.1254424053
1.1.2.1.2.1-4,SS.3061,"Warehouse demolition and A&A works (Structural)- Amendment Submission",7112,"CCGTD1_IPS",TT_Task,"58908",-,-,-,100,TK_Complete,01/09/2016,05/04/2017,12/10/2016,28/04/2017,"SS.3000 FS,SS.3190 FS","SS.3000,SS.3190","SS.3070 FS","SS.3070",57,124,63,128,13,29,14,29,0,,"CCGT D1_Integrated Programme Schedule;EWC - Early Civil Works;Site Preparation, Advance Works and Piling Works;Statutory Submissions;Warehouse partial demolition and A&A Works;BD Review and Approval",2,1,0.0000000621,0.0002034588,0.0006103764,41,1.0,0.0001798199,0.0136986301,0.0030769231,0.00009375,0.0005221932,0.0019305019,0.0919282511,1.0,0.0403934486
1.1.2.1.2.2,58907,"Design / Submission Preparation",7112,"CCGTD1_IPS",WBS,"58906",,,,100,Complete,29/07/2015,29/07/2015,05/09/2016,24/08/2016,,,,,0,36,57,92,0,8,13,21,,,"CCGT D1_Integrated Programme Schedule;EWC - Early Civil Works;Site Preparation, Advance Works and Piling Works;Statutory Submissions;Warehouse partial demolition and A&A Works"
1.1.2.1.2.2-1,SS.3190,"Prepare warehouse demolition and A&A works amendment",7112,"CCGTD1_IPS",TT_Task,"58907",-,-,-,100,TK_Complete,04/07/2016,02/07/2016,05/09/2016,24/08/2016,"","","SS.3060 FS,SS.3061 FS","SS.3060,SS.3061",48,85,57,92,11,19,13,21,0,,"CCGT D1_Integrated Programme Schedule;EWC - Early Civil Works;Site Preparation, Advance Works and Piling Works;Statutory Submissions;Warehouse partial demolition and A&A Works;Design / Submission Preparation",0,2,0.0,0.0006103764,0.0,63,1.0,0.0000812387,0.0,0.0061538462,0.0,0.0015665796,0.0,0.1412556054,1.0,0.0
1.1.2.1.2.2-2,SS.3180,"Prepare warehouse demolition and A&A works",7112,"CCGTD1_IPS",TT_Task,"58907",-,-,-,100,TK_Complete,29/07/2015,29/07/2015,03/11/2015,02/11/2015,"","","SS.3000 FS","SS.3000",0,36,13,50,0,8,3,11,0,,"CCGT D1_Integrated Programme Schedule;EWC - Early Civil Works;Site Preparation, Advance Works and Piling Works;Statutory Submissions;Warehouse partial demolition and A&A Works;Design / Submission Preparation",0,1,0.0,0.0008138352,0.0,97,1.0,0.0000812387,0.0,0.0030769231,0.0,0.0020887728,0.0,0.2174887892,1.0,0.0
1.1.2.1.3,58903,"Advance works and site formation",7112,"CCGTD1_IPS",WBS,"58902",,,,100,Complete,31/03/2016,31/03/2016,19/06/2017,14/06/2017,,,,,35,71,98,134,8,16,23,31,,,"CCGT D1_Integrated Programme Schedule;EWC - Early Civil Works;Site Preparation, Advance Works and Piling Works;Statutory Submissions"
1.1.2.1.3.1,58905,"BD Review and Approval",7112,"CCGTD1_IPS",WBS,"58903",,,,100,Complete,01/06/2016,26/05/2016,19/06/2017,14/06/2017,,,,,44,79,98,134,10,18,23,31,,,"CCGT D1_Integrated Programme Schedule;EWC - Early Civil Works;Site Preparation, Advance Works and Piling Works;Statutory Submissions;Advance works and site formation"
1.1.2.1.3.1-1,SS.3140,"Drainage Diversion 1st Submission",7112,"CCGTD1_IPS",TT_Task,"58905",-,-,-,100,TK_Complete,01/06/2016,26/05/2016,17/08/2016,20/07/2016,"SS.3170 FS","SS.3170","","",44,79,55,87,10,18,12,20,0,,"CCGT D1_Integrated Programme Schedule;EWC - Early Civil Works;Site Preparation, Advance Works and Piling Works;Statutory Submissions;Advance works and site formation;BD Review and Approval",1,0,0.0,0.0,0.0006103764,77,1.0,0.000192432,0.0068493151,0.0,0.0,0.0,0.0019305019,0.1726457399,1.0,0.0455612246
1.1.2.1.3.1-2,SS.3200,"Drainage Diversion GBP",7112,"CCGTD1_IPS",TT_Task,"58905",-,-,-,100,TK_Complete,15/09/2016,15/09/2016,05/12/2016,11/11/2016,"","","SS.3210 FS","SS.3210",59,95,70,104,13,22,16,24,0,,"CCGT D1_Integrated Programme Schedule;EWC - Early Civil Works;Site Preparation, Advance Works and Piling Works;Statutory Submissions;Advance works and site formation;BD Review and Approval",0,1,0.0,0.0002034588,0.0,81,1.0,0.0000812387,0.0,0.0030769231,0.0,0.0005221932,0.0,0.1816143498,1.0,0.0
1.1.2.1.3.1-3,SS.3210,"Drainage Diversion - Consent",7112,"CCGTD1_IPS",TT_Task,"58905",-,-,-,100,TK_Complete,01/12/2016,01/12/2016,09/01/2017,28/12/2016,"SS.3200 FS","SS.3200","","",70,106,75,110,16,24,17,25,1,,"CCGT D1_Integrated Programme Schedule;EWC - Early Civil Works;Site Preparation, Advance Works and Piling Works;Statutory Submissions;Advance works and site formation;BD Review and Approval",1,0,0.0,0.0,0.0002034588,39,1.0,0.0001503957,0.0068493151,0.0,0.0,0.0,0.0006435006,0.0874439462,1.0,0.0283369572
1.1.2.1.3.1-4,SS.3320,"Drainage Diversion Resubmission (Structural)",7112,"CCGTD1_IPS",TT_Task,"58905",-,-,-,100,TK_Complete,15/09/2016,15/09/2016,17/11/2016,09/11/2016,"","","","",59,95,68,103,13,22,15,24,0,,"CCGT D1_Integrated Programme Schedule;EWC - Early Civil Works;Site Preparation, Advance Works and Piling Works;Statutory Submissions;Advance works and site formation;BD Review and Approval",0,0,0.0,0.0,0.0,63,1.0,0.0000812387,0.0,0.0,0.0,0.0,0.0,0.1412556054,1.0,0.0
1.1.2.1.3.1-5,SS.3340,"Drainage Diversion Resubmission (Drainage Plans)",7112,"CCGTD1_IPS",TT_Task,"58905",-,-,-,100,TK_Complete,15/09/2016,15/09/2016,17/11/2016,09/11/2016,"","","","",59,95,68,103,13,22,15,24,0,,"CCGT D1_Integrated Programme Schedule;EWC - Early Civil Works;Site Preparation, Advance Works and Piling Works;Statutory Submissions;Advance works and site formation;BD Review and Approval",0,0,0.0,0.0,0.0,63,1.0,0.0000812387,0.0,0.0,0.0,0.0,0.0,0.1412556054,1.0,0.0
1.1.2.1.3.1-6,SS.3400,"Drainage Diversion 1st Amendment (Structural)",7112,"CCGTD1_IPS",TT_Task,"58905",-,-,-,100,TK_Complete,19/05/2017,19/05/2017,19/06/2017,14/06/2017,"","","","",94,131,98,134,22,30,23,31,5,,"CCGT D1_Integrated Programme Schedule;EWC - Early Civil Works;Site Preparation, Advance Works and Piling Works;Statutory Submissions;Advance works and site formation;BD Review and Approval",0,0,0.0,0.0,0.0,31,1.0,0.0000812387,0.0,0.0,0.0,0.0,0.0,0.0695067265,1.0,0.0
1.1.2.1.3.1-7,SS.3420,"Drainage Diversion ELS 1st Submission",7112,"CCGTD1_IPS",TT_Task,"58905",-,-,-,100,TK_Complete,18/01/2017,18/01/2017,23/03/2017,16/03/2017,"","","","",77,113,86,121,17,26,20,28,1,,"CCGT D1_Integrated Programme Schedule;EWC - Early Civil Works;Site Preparation, Advance Works and Piling Works;Statutory Submissions;Advance works and site formation;BD Review and Approval",0,0,0.0,0.0,0.0,64,1.0,0.0000812387,0.0,0.0,0.0,0.0,0.0,0.1434977578,1.0,0.0
1.1.2.1.3.1-8,SS.3430,"Drainage Diversion ELS 1st Amendment",7112,"CCGTD1_IPS",TT_Task,"58905",-,-,-,100,TK_Complete,21/04/2017,21/04/2017,23/05/2017,19/05/2017,"","","","",90,127,94,131,21,29,22,30,4,,"CCGT D1_Integrated Programme Schedule;EWC - Early Civil Works;Site Preparation, Advance Works and Piling Works;Statutory Submissions;Advance works and site formation;BD Review and Approval",0,0,0.0,0.0,0.0,32,1.0,0.0000812387,0.0,0.0,0.0,0.0,0.0,0.0717488789,1.0,0.0
1.1.2.1.3.2,58904,"Design / Submission Preparation",7112,"CCGTD1_IPS",WBS,"58903",,,,100,Complete,31/03/2016,31/03/2016,27/04/2016,23/04/2016,,,,,35,71,39,75,8,16,9,17,,,"CCGT D1_Integrated Programme Schedule;EWC - Early Civil Works;Site Preparation, Advance Works and Piling Works;Statutory Submissions;Advance works and site formation"
1.1.2.1.3.2-1,SS.3170,"Prepare Drainage Diversion Submission",7112,"CCGTD1_IPS",TT_Task,"58904",-,-,-,100,TK_Complete,31/03/2016,31/03/2016,27/04/2016,23/04/2016,"SS.3010 FS","SS.3010","SS.3140 FS","SS.3140",35,71,39,75,8,16,9,17,0,,"CCGT D1_Integrated Programme Schedule;EWC - Early Civil Works;Site Preparation, Advance Works and Piling Works;Statutory Submissions;Advance works and site formation;Design / Submission Preparation",1,1,0.0000000828,0.0002034588,0.0004069176,27,1.0,0.0001306122,0.0068493151,0.0030769231,0.000125,0.0005221932,0.0012870013,0.0605381166,1.0,0.0202306911
1.1.3,58805,"Excavation",7112,"CCGTD1_IPS",WBS,"58803",,,,100,Complete,01/06/2021,14/06/2017,05/07/2021,19/07/2017,,,,,304,134,309,139,71,31,72,32,,,"CCGT D1_Integrated Programme Schedule;EWC - Early Civil Works"
1.1.3-1,A3490,"Bulk excavation",7112,"CCGTD1_IPS",TT_Task,"58805",-,-,-,100,TK_Complete,01/06/2021,14/06/2017,05/07/2021,19/07/2017,"","","","",304,134,309,139,71,31,72,32,96,,"CCGT D1_Integrated Programme Schedule;EWC - Early Civil Works;Excavation",0,0,0.0,0.0,0.0,34,0.8,0.0000812387,0.0,0.0,0.0,0.0,0.0,0.0762331839,0.8,0.0
1.2,58518,"(OEM) Commissioning",7112,"CCGTD1_IPS",WBS,"58232",,,,100,Complete,23/05/2019,22/05/2019,31/05/2022,,,,,,199,235,356,,46,55,83,,,,"CCGT D1_Integrated Programme Schedule"
1.2.1,61670,"POST COMMISSIONING DELIVERABLES",7112,"CCGTD1_IPS",WBS,"58518",,,,100,Complete,31/05/2021,31/05/2021,31/05/2022,,,,,,304,341,356,,71,79,83,,,,"CCGT D1_Integrated Programme Schedule;(OEM) Commissioning"
1.2.1.1,61678,"POST TB2 P/L",7112,"CCGTD1_IPS",WBS,"61670",,,,0,NotStart,31/05/2022,,31/05/2022,,,,,,356,,356,,83,,83,,,,"CCGT D1_Integrated Programme Schedule;(OEM) Commissioning;POST COMMISSIONING DELIVERABLES"
1.2.1.1-1,PCS00010,"Post TB2 P/L",7112,"CCGTD1_IPS",TT_FinMile,"61678",-,-,-,0,TK_NotStart,31/05/2022,,31/05/2022,,"","","","",356,,356,,83,,83,,99,0,"CCGT D1_Integrated Programme Schedule;(OEM) Commissioning;POST COMMISSIONING DELIVERABLES;POST TB2 P/L",0,0,0.0,0.0,0.0,0,1.0,0.0000812387,0.0,0.0,0.0,0.0,0.0,0.0,1.0,0.0
1.2.1.2,61674,"DOCUMENTATION",7112,"CCGTD1_IPS",WBS,"61670",,,,100,Complete,16/07/2021,,16/07/2021,,,,,,311,,311,,72,,72,,,,"CCGT D1_Integrated Programme Schedule;(OEM) Commissioning;POST COMMISSIONING DELIVERABLES"
1.2.1.2.1,61677,"SDS - Software Deliverable Schedule",7112,"CCGTD1_IPS",WBS,"61674",,,,0,NotStart,16/07/2021,,16/07/2021,,,,,,311,,311,,72,,72,,,,"CCGT D1_Integrated Programme Schedule;(OEM) Commissioning;POST COMMISSIONING DELIVERABLES;DOCUMENTATION"
1.2.1.2.1-1,SP-92-2-45,"AS BUILT DOCUMENTATION [submittal to customer]",7112,"CCGTD1_IPS",TT_Mile,"61677",-,-,-,0,TK_NotStart,16/07/2021,,16/07/2021,,"","","SI1---2-50 FS","SI1---2-50",311,,311,,72,,72,,99,8,"CCGT D1_Integrated Programme Schedule;(OEM) Commissioning;POST COMMISSIONING DELIVERABLES;DOCUMENTATION;SDS - Software Deliverable Schedule",0,1,0.0,0.0002034588,0.0,0,0.0,0.0000812387,0.0,0.0030769231,0.0,0.0005221932,0.0,0.0,0.0,0.0
1.2.1.2.2,61676,"Software Deliverables Construction/ Commissioning",7112,"CCGTD1_IPS",WBS,"61674",,,,0,NotStart,16/07/2021,,16/07/2021,,,,,,311,,311,,72,,72,,,,"CCGT D1_Integrated Programme Schedule;(OEM) Commissioning;POST COMMISSIONING DELIVERABLES;DOCUMENTATION"
1.2.1.2.2-1,SI-92-2-96,"MARK-UPS FROM SITE AVAILABLE",7112,"CCGTD1_IPS",TT_FinMile,"61676",-,-,-,0,TK_NotStart,16/07/2021,,16/07/2021,,"","","","",311,,311,,72,,72,,99,0,"CCGT D1_Integrated Programme Schedule;(OEM) Commissioning;POST COMMISSIONING DELIVERABLES;DOCUMENTATION;Software Deliverables Construction/ Commissioning",0,0,0.0,0.0,0.0,0,1.0,0.0000812387,0.0,0.0,0.0,0.0,0.0,0.0,1.0,0.0
1.2.1.2.3,61675,"Operation & Maintenance Manuals",7112,"CCGTD1_IPS",WBS,"61674",,,,0,NotStart,16/07/2021,,16/07/2021,,,,,,311,,311,,72,,72,,,,"CCGT D1_Integrated Programme Schedule;(OEM) Commissioning;POST COMMISSIONING DELIVERABLES;DOCUMENTATION"
1.2.1.2.3-1,SI-1102-40,"FINAL OPERATING AND MAINTENANCE DOCUMENTATION (O&M)",7112,"CCGTD1_IPS",TT_FinMile,"61675",-,-,-,0,TK_NotStart,16/07/2021,,16/07/2021,,"","","","",311,,311,,72,,72,,99,0,"CCGT D1_Integrated Programme Schedule;(OEM) Commissioning;POST COMMISSIONING DELIVERABLES;DOCUMENTATION;Operation & Maintenance Manuals",0,0,0.0,0.0,0.0,0,1.0,0.0000812387,0.0,0.0,0.0,0.0,0.0,0.0,1.0,0.0
1.2.1.3,61671,"MILESTONE",7112,"CCGTD1_IPS",WBS,"61670",,,,100,Complete,31/05/2021,31/05/2021,16/07/2021,,,,,,304,341,311,,71,79,72,,,,"CCGT D1_Integrated Programme Schedule;(OEM) Commissioning;POST COMMISSIONING DELIVERABLES"
1.2.1.3.1,61673,"BOP Option_Key Dates / Contract Schedule 3A (Programme Requirements & Constraints)",7112,"CCGTD1_IPS",WBS,"61671",,,,0,NotStart,16/07/2021,,16/07/2021,,,,,,311,,311,,72,,72,,,,"CCGT D1_Integrated Programme Schedule;(OEM) Commissioning;POST COMMISSIONING DELIVERABLES;MILESTONE"
1.2.1.3.1-1,SI1---3-53,"(BOP6) COMPLETION AND SIGN OFF OF ALL CHECK SHEET TO CONFIRM COMPLETION OF HOT COMMISSIONING",7112,"CCGTD1_IPS",TT_FinMile,"61673",-,-,-,0,TK_NotStart,16/07/2021,,16/07/2021,,"SI1---2-35 FF","SI1---2-35","","",311,,311,,72,,72,,99,0,"CCGT D1_Integrated Programme Schedule;(OEM) Commissioning;POST COMMISSIONING DELIVERABLES;MILESTONE;BOP Option_Key Dates / Contract Schedule 3A (Programme Requirements & Constraints)",1,0,0.0,0.0,0.0004069176,0,1.0,0.0000812387,0.0068493151,0.0,0.0,0.0,0.0012870013,0.0,1.0,0.0
1.2.1.3.2,61672,"Key Dates / Contract Schedule 3A (Programme Requirements & Constraints)",7112,"CCGTD1_IPS",WBS,"61671",,,,,Active,31/05/2021,31/05/2021,16/07/2021,,,,,,304,341,311,,71,79,72,,,,"CCGT D1_Integrated Programme Schedule;(OEM) Commissioning;POST COMMISSIONING DELIVERABLES;MILESTONE"
1.2.1.3.2-1,SI1---2-40,"(6c) COMPLETION AND SIGN OFF OF ALL CHECK SHEET TO CONFIRM COMPLETION OF HOT COMMISSIONING",7112,"CCGTD1_IPS",TT_FinMile,"61672",-,-,-,100,TK_Complete,31/05/2021,31/05/2021,31/05/2021,31/05/2021,"SI1---2-35 FF","SI1---2-35","SI1---2-50 FF,SI1---2-45 FF","SI1---2-50,SI1---2-45",304,341,304,341,71,79,71,79,96,,"CCGT D1_Integrated Programme Schedule;(OEM) Commissioning;POST COMMISSIONING DELIVERABLES;MILESTONE;Key Dates / Contract Schedule 3A (Programme Requirements & Constraints)",1,2,0.0000001656,0.0004069176,0.0004069176,0,1.0,0.0000812387,0.0068493151,0.0061538462,0.00025,0.0010443864,0.0012870013,0.0,1.0,0.0
1.2.1.3.2-2,SI1---2-50,"(6e) COMPLETION OF AS-BUILT DRAWINGS AND OTHER COMPLETION DOCUMENTS",7112,"CCGTD1_IPS",TT_FinMile,"61672",-,-,-,0,TK_NotStart,16/07/2021,,16/07/2021,,"SI1---2-40 FF,SP-92-2-45 FS","SI1---2-40,SP-92-2-45","","",311,,311,,72,,72,,99,0,"CCGT D1_Integrated Programme Schedule;(OEM) Commissioning;POST COMMISSIONING DELIVERABLES;MILESTONE;Key Dates / Contract Schedule 3A (Programme Requirements & Constraints)",2,0,0.0,0.0,0.0008138352,0,1.0,0.0000812387,0.0136986301,0.0,0.0,0.0,0.0025740026,0.0,1.0,0.0
1.2.1.3.2-3,SI1---2-45,"(6d) COMPLETION OF O&M MANUALS",7112,"CCGTD1_IPS",TT_FinMile,"61672",-,-,-,0,TK_NotStart,16/07/2021,,16/07/2021,,"SI1---2-40 FF","SI1---2-40","","",311,,311,,72,,72,,99,0,"CCGT D1_Integrated Programme Schedule;(OEM) Commissioning;POST COMMISSIONING DELIVERABLES;MILESTONE;Key Dates / Contract Schedule 3A (Programme Requirements & Constraints)",1,0,0.0,0.0,0.0006103764,0,1.0,0.0000812387,0.0068493151,0.0,0.0,0.0,0.0019305019,0.0,1.0,0.0
1.2.2,58519,"COLD COMMISSIONING",7112,"CCGTD1_IPS",WBS,"58518",,,,100,Complete,23/05/2019,22/05/2019,07/06/2021,,,,,,199,235,305,,46,55,71,,,,"CCGT D1_Integrated Programme Schedule;(OEM) Commissioning"
1.2.2.1,58612,"CLP System",7112,"CCGTD1_IPS",WBS,"58519",,,,100,Complete,09/12/2019,18/11/2019,07/07/2020,17/01/2020,,,,,227,261,257,270,53,61,60,63,,,"CCGT D1_Integrated Programme Schedule;(OEM) Commissioning;COLD COMMISSIONING"
1.2.2.1.1,58622,"10CHA",7112,"CCGTD1_IPS",WBS,"58612",,,,100,Complete,02/07/2020,06/01/2020,07/07/2020,06/01/2020,,,,,257,268,257,268,60,62,60,62,,,"CCGT D1_Integrated Programme Schedule;(OEM) Commissioning;COLD COMMISSIONING;CLP System"
1.2.2.1.1-1,CCOM4840,"Primary protection test discussion",7112,"CCGTD1_IPS",TT_Task,"58622",-,-,-,100,TK_Complete,02/07/2020,06/01/2020,07/07/2020,06/01/2020,"","","","",257,268,257,268,60,62,60,62,95,,"CCGT D1_Integrated Programme Schedule;(OEM) Commissioning;COLD COMMISSIONING;CLP System;10CHA",0,0,0.0,0.0,0.0,5,1.0,0.0000812387,0.0,0.0,0.0,0.0,0.0,0.0112107623,1.0,0.0
1.2.2.1.2,58621,"10EK",7112,"CCGTD1_IPS",WBS,"58612",,,,100,Complete,02/07/2020,06/01/2020,07/07/2020,17/01/2020,,,,,257,268,257,270,60,62,60,63,,,"CCGT D1_Integrated Programme Schedule;(OEM) Commissioning;COLD COMMISSIONING;CLP System"
1.2.2.1.2-1,CCOM4830,"EK purging procedure review",7112,"CCGTD1_IPS",TT_Task,"58621",-,-,-,100,TK_Complete,02/07/2020,06/01/2020,07/07/2020,10/01/2020,"","","CCOM5130 FS","CCOM5130",257,268,257,269,60,62,60,62,95,,"CCGT D1_Integrated Programme Schedule;(OEM) Commissioning;COLD COMMISSIONING;CLP System;10EK",0,1,0.0,0.0002034588,0.0,5,1.0,0.0000812387,0.0,0.0030769231,0.0,0.0005221932,0.0,0.0112107623,1.0,0.0
1.2.2.1.2-2,CCOM5130,"EK purging procedure review",7112,"CCGTD1_IPS",TT_Task,"58621",-,-,-,100,TK_Complete,02/07/2020,13/01/2020,07/07/2020,17/01/2020,"CCOM4830 FS","CCOM4830","","",257,269,257,270,60,62,60,63,96,,"CCGT D1_Integrated Programme Schedule;(OEM) Commissioning;COLD COMMISSIONING;CLP System;10EK",1,0,0.0,0.0,0.0002034588,5,1.0,0.0001503957,0.0068493151,0.0,0.0,0.0,0.0006435006,0.0112107623,1.0,0.0283369572
1.2.2.1.3,58620,"10ZTA",7112,"CCGTD1_IPS",WBS,"58612",,,,100,Complete,02/07/2020,16/12/2019,07/07/2020,21/12/2019,,,,,257,265,257,266,60,61,60,62,,,"CCGT D1_Integrated Programme Schedule;(OEM) Commissioning;COLD COMMISSIONING;CLP System"
1.2.2.1.3-1,CCOM4560,"Chemical clean effluent coordination",7112,"CCGTD1_IPS",TT_Task,"58620",-,-,-,100,TK_Complete,02/07/2020,16/12/2019,07/07/2020,21/12/2019,"","","","",257,265,257,266,60,61,60,62,95,,"CCGT D1_Integrated Programme Schedule;(OEM) Commissioning;COLD COMMISSIONING;CLP System;10ZTA",0,0,0.0,0.0,0.0,5,1.0,0.0000812387,0.0,0.0,0.0,0.0,0.0,0.0112107623,1.0,0.0
1.2.2.1.4,58619,"10EGC",7112,"CCGTD1_IPS",WBS,"58612",,,,100,Complete,02/07/2020,11/12/2019,07/07/2020,12/12/2019,,,,,257,264,257,264,60,61,60,61,,,"CCGT D1_Integrated Programme Schedule;(OEM) Commissioning;COLD COMMISSIONING;CLP System"
1.2.2.1.4-1,CCOM4240,"Rotation checks & motor solo runs for Fuel oil forwarding pumps",7112,"CCGTD1_IPS",TT_Task,"58619",-,-,-,100,TK_Complete,02/07/2020,11/12/2019,07/07/2020,12/12/2019,"","","","",257,264,257,264,60,61,60,61,94,,"CCGT D1_Integrated Programme Schedule;(OEM) Commissioning;COLD COMMISSIONING;CLP System;10EGC",0,0,0.0,0.0,0.0,5,1.0,0.0000812387,0.0,0.0,0.0,0.0,0.0,0.0112107623,1.0,0.0
1.2.2.1.5,58618,"10EG",7112,"CCGTD1_IPS",WBS,"58612",,,,100,Complete,02/07/2020,25/11/2019,07/07/2020,17/01/2020,,,,,257,262,257,270,60,61,60,63,,,"CCGT D1_Integrated Programme Schedule;(OEM) Commissioning;COLD COMMISSIONING;CLP System"
1.2.2.1.5-1,CCOM4140,"EG Tie-in work coordination",7112,"CCGTD1_IPS",TT_Task,"58618",-,-,-,100,TK_Complete,02/07/2020,25/11/2019,07/07/2020,29/11/2019,"","","CCOM4300 FS","CCOM4300",257,262,257,263,60,61,60,61,94,,"CCGT D1_Integrated Programme Schedule;(OEM) Commissioning;COLD COMMISSIONING;CLP System;10EG",0,1,0.0,0.0008138352,0.0,5,1.0,0.0000812387,0.0,0.0030769231,0.0,0.0020887728,0.0,0.0112107623,1.0,0.0
1.2.2.1.5-2,CCOM4300,"EG Tie-in work coordination",7112,"CCGTD1_IPS",TT_Task,"58618",-,-,-,100,TK_Complete,02/07/2020,09/12/2019,07/07/2020,13/12/2019,"CCOM4140 FS","CCOM4140","CCOM4530 FS","CCOM4530",257,264,257,265,60,61,60,61,94,,"CCGT D1_Integrated Programme Schedule;(OEM) Commissioning;COLD COMMISSIONING;CLP System;10EG",1,1,0.0000001242,0.0006103764,0.0002034588,5,1.0,0.0001503957,0.0068493151,0.0030769231,0.0001875,0.0015665796,0.0006435006,0.0112107623,1.0,0.0283369572
1.2.2.1.5-3,CCOM4530,"EG Tie-in work coordination",7112,"CCGTD1_IPS",TT_Task,"58618",-,-,-,100,TK_Complete,02/07/2020,16/12/2019,07/07/2020,20/12/2019,"CCOM4300 FS","CCOM4300","CCOM4820 FS","CCOM4820",257,265,257,266,60,61,60,62,95,,"CCGT D1_Integrated Programme Schedule;(OEM) Commissioning;COLD COMMISSIONING;CLP System;10EG",1,1,0.0000001656,0.0004069176,0.0004069176,5,1.0,0.000209244,0.0068493151,0.0030769231,0.00025,0.0010443864,0.0012870013,0.0112107623,1.0,0.0524499399
1.2.2.1.5-4,CCOM4820,"EG Tie-in work coordination",7112,"CCGTD1_IPS",TT_Task,"58618",-,-,-,100,TK_Complete,02/07/2020,06/01/2020,07/07/2020,10/01/2020,"CCOM4530 FS","CCOM4530","CCOM5120 FS","CCOM5120",257,268,257,269,60,62,60,62,95,,"CCGT D1_Integrated Programme Schedule;(OEM) Commissioning;COLD COMMISSIONING;CLP System;10EG",1,1,0.0000001242,0.0002034588,0.0006103764,5,1.0,0.0002593786,0.0068493151,0.0030769231,0.0001875,0.0005221932,0.0019305019,0.0112107623,1.0,0.0729924654
1.2.2.1.5-5,CCOM5120,"EG Tie-in work coordination",7112,"CCGTD1_IPS",TT_Task,"58618",-,-,-,100,TK_Complete,02/07/2020,13/01/2020,07/07/2020,17/01/2020,"CCOM4820 FS","CCOM4820","","",257,269,257,270,60,62,60,63,96,,"CCGT D1_Integrated Programme Schedule;(OEM) Commissioning;COLD COMMISSIONING;CLP System;10EG",1,0,0.0,0.0,0.0008138352,5,1.0,0.0003021254,0.0068493151,0.0,0.0,0.0,0.0025740026,0.0112107623,1.0,0.0905078876
1.2.2.1.6,58617,"10QJA",7112,"CCGTD1_IPS",WBS,"58612",,,,100,Complete,02/07/2020,25/11/2019,07/07/2020,20/12/2019,,,,,257,262,257,266,60,61,60,62,,,"CCGT D1_Integrated Programme Schedule;(OEM) Commissioning;COLD COMMISSIONING;CLP System"
1.2.2.1.6-1,CCOM4130,"QJA10 / QJA20 Tie-in work coordination",7112,"CCGTD1_IPS",TT_Task,"58617",-,-,-,100,TK_Complete,02/07/2020,25/11/2019,07/07/2020,29/11/2019,"","","CCOM4290 FS","CCOM4290",257,262,257,263,60,61,60,61,94,,"CCGT D1_Integrated Programme Schedule;(OEM) Commissioning;COLD COMMISSIONING;CLP System;10QJA",0,1,0.0,0.0004069176,0.0,5,1.0,0.0000812387,0.0,0.0030769231,0.0,0.0010443864,0.0,0.0112107623,1.0,0.0
1.2.2.1.6-2,CCOM4290,"QJA10 / QJA20 Tie-in work coordination",7112,"CCGTD1_IPS",TT_Task,"58617",-,-,-,100,TK_Complete,02/07/2020,09/12/2019,07/07/2020,13/12/2019,"CCOM4130 FS","CCOM4130","CCOM4520 FS","CCOM4520",257,264,257,265,60,61,60,61,94,,"CCGT D1_Integrated Programme Schedule;(OEM) Commissioning;COLD COMMISSIONING;CLP System;10QJA",1,1,0.0000000414,0.0002034588,0.0002034588,5,1.0,0.0001503957,0.0068493151,0.0030769231,0.0000625,0.0005221932,0.0006435006,0.0112107623,1.0,0.0283369572
1.2.2.1.6-3,CCOM4520,"QJA10 / QJA20 Tie-in work coordination",7112,"CCGTD1_IPS",TT_Task,"58617",-,-,-,100,TK_Complete,02/07/2020,16/12/2019,07/07/2020,20/12/2019,"CCOM4290 FS","CCOM4290","","",257,265,257,266,60,61,60,62,94,,"CCGT D1_Integrated Programme Schedule;(OEM) Commissioning;COLD COMMISSIONING;CLP System;10QJA",1,0,0.0,0.0,0.0004069176,5,1.0,0.000209244,0.0068493151,0.0,0.0,0.0,0.0012870013,0.0112107623,1.0,0.0524499399
1.2.2.1.7,58616,"10GHD",7112,"CCGTD1_IPS",WBS,"58612",,,,100,Complete,02/07/2020,19/11/2019,07/07/2020,26/11/2019,,,,,257,261,257,262,60,61,60,61,,,"CCGT D1_Integrated Programme Schedule;(OEM) Commissioning;COLD COMMISSIONING;CLP System"
1.2.2.1.7-1,CCOM3760,"GHD Tie-in work coordination",7112,"CCGTD1_IPS",TT_Task,"58616",-,-,-,100,TK_Complete,02/07/2020,19/11/2019,07/07/2020,22/11/2019,"","","CCOM4120 FS","CCOM4120",257,261,257,262,60,61,60,61,93,,"CCGT D1_Integrated Programme Schedule;(OEM) Commissioning;COLD COMMISSIONING;CLP System;10GHD",0,1,0.0,0.0002034588,0.0,5,1.0,0.0000812387,0.0,0.0030769231,0.0,0.0005221932,0.0,0.0112107623,1.0,0.0
1.2.2.1.7-2,CCOM4120,"GHD Tie-in work coordination",7112,"CCGTD1_IPS",TT_Task,"58616",-,-,-,100,TK_Complete,02/07/2020,25/11/2019,07/07/2020,26/11/2019,"CCOM3760 FS","CCOM3760","","",257,262,257,262,60,61,60,61,94,,"CCGT D1_Integrated Programme Schedule;(OEM) Commissioning;COLD COMMISSIONING;CLP System;10GHD",1,0,0.0,0.0,0.0002034588,5,1.0,0.0001503957,0.0068493151,0.0,0.0,0.0,0.0006435006,0.0112107623,1.0,0.0283369572
1.2.2.1.8,58615,"10SGA",7112,"CCGTD1_IPS",WBS,"58612",,,,100,Complete,02/07/2020,18/11/2019,07/07/2020,17/01/2020,,,,,257,261,257,270,60,61,60,63,,,"CCGT D1_Integrated Programme Schedule;(OEM) Commissioning;COLD COMMISSIONING;CLP System"
1.2.2.1.8-1,CCOM3750,"Fresh water fire fight system preparation and spray test",7112,"CCGTD1_IPS",TT_Task,"58615",-,-,-,100,TK_Complete,02/07/2020,18/11/2019,07/07/2020,18/11/2019,"","","CCOM5140 FS","CCOM5140",257,261,257,261,60,61,60,61,93,,"CCGT D1_Integrated Programme Schedule;(OEM) Commissioning;COLD COMMISSIONING;CLP System;10SGA",0,1,0.0,0.0002034588,0.0,5,1.0,0.0000812387,0.0,0.0030769231,0.0,0.0005221932,0.0,0.0112107623,1.0,0.0
1.2.2.1.8-2,CCOM5140,"Fire Fighting System flushing coordination",7112,"CCGTD1_IPS",TT_Task,"58615",-,-,-,100,TK_Complete,02/07/2020,13/01/2020,07/07/2020,17/01/2020,"CCOM3750 FS","CCOM3750","","",257,269,257,270,60,62,60,63,96,,"CCGT D1_Integrated Programme Schedule;(OEM) Commissioning;COLD COMMISSIONING;CLP System;10SGA",1,0,0.0,0.0,0.0002034588,5,1.0,0.0001503957,0.0068493151,0.0,0.0,0.0,0.0006435006,0.0112107623,1.0,0.0283369572
1.2.2.1.9,58614,"10BAT",7112,"CCGTD1_IPS",WBS,"58612",,,,100,Complete,09/12/2019,18/11/2019,07/07/2020,22/12/2019,,,,,227,261,257,266,53,61,60,62,,,"CCGT D1_Integrated Programme Schedule;(OEM) Commissioning;COLD COMMISSIONING;CLP System"
1.2.2.1.9-1,CCOM3740,"Backfeed Coordination (HV injection & interlock/intertrip tests)",7112,"CCGTD1_IPS",TT_Task,"58614",-,-,-,100,TK_Complete,02/07/2020,18/11/2019,07/07/2020,21/11/2019,"","","CCOM4100 FS","CCOM4100",257,261,257,261,60,61,60,61,93,,"CCGT D1_Integrated Programme Schedule;(OEM) Commissioning;COLD COMMISSIONING;CLP System;10BAT",0,1,0.0,0.0008138352,0.0,5,1.0,0.0000812387,0.0,0.0030769231,0.0,0.0020887728,0.0,0.0112107623,1.0,0.0
1.2.2.1.9-2,CCOM4100,"Backfeed Coordination (Document review)",7112,"CCGTD1_IPS",TT_Task,"58614",-,-,-,100,TK_Complete,02/07/2020,25/11/2019,07/07/2020,29/11/2019,"CCOM3740 FS","CCOM3740","CCOM4310 FS","CCOM4310",257,262,257,263,60,61,60,61,94,,"CCGT D1_Integrated Programme Schedule;(OEM) Commissioning;COLD COMMISSIONING;CLP System;10BAT",1,1,0.0000001242,0.0006103764,0.0002034588,5,1.0,0.0001503957,0.0068493151,0.0030769231,0.0001875,0.0015665796,0.0006435006,0.0112107623,1.0,0.0283369572
1.2.2.1.9-3,CCOM4310,"Issue for BAT re-energization after outage",7112,"CCGTD1_IPS",TT_Task,"58614",-,-,-,100,TK_Complete,09/12/2019,10/12/2019,13/12/2019,13/12/2019,"CCOM4100 FS","CCOM4100","CCOM4540 FS","CCOM4540",227,264,228,265,53,61,53,61,85,,"CCGT D1_Integrated Programme Schedule;(OEM) Commissioning;COLD COMMISSIONING;CLP System;10BAT",1,1,0.0000001656,0.0004069176,0.0004069176,4,1.0,0.000209244,0.0068493151,0.0030769231,0.00025,0.0010443864,0.0012870013,0.0089686099,1.0,0.0524499399
1.2.2.1.9-4,CCOM4540,"Issue for BAT re-energization after outage",7112,"CCGTD1_IPS",TT_Task,"58614",-,-,-,100,TK_Complete,02/07/2020,17/12/2019,07/07/2020,20/12/2019,"CCOM4310 FS","CCOM4310","CCOM4550 FS","CCOM4550",257,265,257,266,60,61,60,62,95,,"CCGT D1_Integrated Programme Schedule;(OEM) Commissioning;COLD COMMISSIONING;CLP System;10BAT",1,1,0.0000001242,0.0002034588,0.0006103764,5,1.0,0.0002593786,0.0068493151,0.0030769231,0.0001875,0.0005221932,0.0019305019,0.0112107623,1.0,0.0729924654
1.2.2.1.9-5,CCOM4550,"Transformer re-energization work",7112,"CCGTD1_IPS",TT_Task,"58614",-,-,-,100,TK_Complete,02/07/2020,22/12/2019,07/07/2020,22/12/2019,"CCOM4540 FS","CCOM4540","","",257,266,257,266,60,62,60,62,95,,"CCGT D1_Integrated Programme Schedule;(OEM) Commissioning;COLD COMMISSIONING;CLP System;10BAT",1,0,0.0,0.0,0.0008138352,5,1.0,0.0003021254,0.0068493151,0.0,0.0,0.0,0.0025740026,0.0112107623,1.0,0.0905078876
1.2.2.1.10,58613,"All System",7112,"CCGTD1_IPS",WBS,"58612",,,,100,Complete,02/07/2020,18/11/2019,07/07/2020,01/12/2019,,,,,257,261,257,263,60,61,60,61,,,"CCGT D1_Integrated Programme Schedule;(OEM) Commissioning;COLD COMMISSIONING;CLP System"
1.2.2.1.10-1,CCOM3730,"Station interface walkdowns for all upcoming terminal points (flushing/cleaning preparation)",7112,"CCGTD1_IPS",TT_Task,"58613",-,-,-,100,TK_Complete,02/07/2020,18/11/2019,07/07/2020,22/11/2019,"","","CCOM4110 FS","CCOM4110",257,261,257,262,60,61,60,61,93,,"CCGT D1_Integrated Programme Schedule;(OEM) Commissioning;COLD COMMISSIONING;CLP System;All System",0,1,0.0,0.0002034588,0.0,5,1.0,0.0000812387,0.0,0.0030769231,0.0,0.0005221932,0.0,0.0112107623,1.0,0.0
1.2.2.1.10-2,CCOM4110,"400kV Backfeed @ 1/12 02:00",7112,"CCGTD1_IPS",TT_Task,"58613",-,-,-,100,TK_Complete,02/07/2020,01/12/2019,07/07/2020,01/12/2019,"CCOM3730 FS","CCOM3730","","",257,263,257,263,60,61,60,61,94,,"CCGT D1_Integrated Programme Schedule;(OEM) Commissioning;COLD COMMISSIONING;CLP System;All System",1,0,0.0,0.0,0.0002034588,5,1.0,0.0001503957,0.0068493151,0.0,0.0,0.0,0.0006435006,0.0112107623,1.0,0.0283369572
1.2.2.2,58611,"LCAL MEP System",7112,"CCGTD1_IPS",WBS,"58519",,,,100,Complete,02/07/2020,18/11/2019,07/07/2020,19/01/2020,,,,,257,261,257,270,60,61,60,63,,,"CCGT D1_Integrated Programme Schedule;(OEM) Commissioning;COLD COMMISSIONING"
1.2.2.2-1,CCOM3720,"MEP System Commissioining",7112,"CCGTD1_IPS",TT_Task,"58611",-,-,-,100,TK_Complete,02/07/2020,18/11/2019,07/07/2020,23/11/2019,"","","CCOM4090 FS","CCOM4090",257,261,257,262,60,61,60,61,93,,"CCGT D1_Integrated Programme Schedule;(OEM) Commissioning;COLD COMMISSIONING;LCAL MEP System",0,1,0.0,0.001017294,0.0,5,1.0,0.0000812387,0.0,0.0030769231,0.0,0.0026109661,0.0,0.0112107623,1.0,0.0
1.2.2.2-2,CCOM4090,"MEP System Commissioining",7112,"CCGTD1_IPS",TT_Task,"58611",-,-,-,100,TK_Complete,02/07/2020,25/11/2019,07/07/2020,30/11/2019,"CCOM3720 FS","CCOM3720","CCOM4280 FS","CCOM4280",257,262,257,263,60,61,60,61,94,,"CCGT D1_Integrated Programme Schedule;(OEM) Commissioning;COLD COMMISSIONING;LCAL MEP System",1,1,0.0000001656,0.0008138352,0.0002034588,5,1.0,0.0001503957,0.0068493151,0.0030769231,0.00025,0.0020887728,0.0006435006,0.0112107623,1.0,0.0283369572
1.2.2.2-3,CCOM4280,"MEP System Commissioining",7112,"CCGTD1_IPS",TT_Task,"58611",-,-,-,100,TK_Complete,02/07/2020,09/12/2019,07/07/2020,14/12/2019,"CCOM4090 FS","CCOM4090","CCOM4510 FS","CCOM4510",257,264,257,265,60,61,60,61,94,,"CCGT D1_Integrated Programme Schedule;(OEM) Commissioning;COLD COMMISSIONING;LCAL MEP System",1,1,0.0000002484,0.0006103764,0.0004069176,5,1.0,0.000209244,0.0068493151,0.0030769231,0.000375,0.0015665796,0.0012870013,0.0112107623,1.0,0.0524499399
1.2.2.2-4,CCOM4510,"MEP System Commissioining",7112,"CCGTD1_IPS",TT_Task,"58611",-,-,-,100,TK_Complete,02/07/2020,16/12/2019,07/07/2020,21/12/2019,"CCOM4280 FS","CCOM4280","CCOM4810 FS","CCOM4810",257,265,257,266,60,61,60,62,94,,"CCGT D1_Integrated Programme Schedule;(OEM) Commissioning;COLD COMMISSIONING;LCAL MEP System",1,1,0.0000002484,0.0004069176,0.0006103764,5,1.0,0.0002593786,0.0068493151,0.0030769231,0.000375,0.0010443864,0.0019305019,0.0112107623,1.0,0.0729924654
1.2.2.2-5,CCOM4810,"MEP System Commissioining",7112,"CCGTD1_IPS",TT_Task,"58611",-,-,-,100,TK_Complete,02/07/2020,06/01/2020,07/07/2020,11/01/2020,"CCOM4510 FS","CCOM4510","CCOM5110 FS","CCOM5110",257,268,257,269,60,62,60,62,95,,"CCGT D1_Integrated Programme Schedule;(OEM) Commissioning;COLD COMMISSIONING;LCAL MEP System",1,1,0.0000001656,0.0002034588,0.0008138352,5,1.0,0.0003021254,0.0068493151,0.0030769231,0.00025,0.0005221932,0.0025740026,0.0112107623,1.0,0.0905078876
1.2.2.2-6,CCOM5110,"MEP System Commissioining",7112,"CCGTD1_IPS",TT_Task,"58611",-,-,-,100,TK_Complete,02/07/2020,13/01/2020,07/07/2020,19/01/2020,"CCOM4810 FS","CCOM4810","","",257,269,257,270,60,62,60,63,96,,"CCGT D1_Integrated Programme Schedule;(OEM) Commissioning;COLD COMMISSIONING;LCAL MEP System",1,0,0.0,0.0,0.001017294,5,1.0,0.000338598,0.0068493151,0.0,0.0,0.0,0.0032175032,0.0112107623,1.0,0.1054524737
1.2.2.3,58578,"Balance of Systems for First Fire",7112,"CCGTD1_IPS",WBS,"58519",,,,100,Complete,04/07/2019,04/07/2019,07/07/2020,19/01/2020,,,,,205,241,257,270,47,56,60,63,,,"CCGT D1_Integrated Programme Schedule;(OEM) Commissioning;COLD COMMISSIONING"
1.2.2.3.1,58610,"10QCC",7112,"CCGTD1_IPS",WBS,"58578",,,,100,Complete,02/07/2020,15/01/2020,07/07/2020,17/01/2020,,,,,257,269,257,270,60,62,60,63,,,"CCGT D1_Integrated Programme Schedule;(OEM) Commissioning;COLD COMMISSIONING;Balance of Systems for First Fire"
1.2.2.3.1-1,CCOM4940,"System line up",7112,"CCGTD1_IPS",TT_Task,"58610",-,-,-,100,TK_Complete,02/07/2020,15/01/2020,07/07/2020,17/01/2020,"","","","",257,269,257,270,60,62,60,63,95,,"CCGT D1_Integrated Programme Schedule;(OEM) Commissioning;COLD COMMISSIONING;Balance of Systems for First Fire;10QCC",0,0,0.0,0.0,0.0,5,1.0,0.0000812387,0.0,0.0,0.0,0.0,0.0,0.0112107623,1.0,0.0
1.2.2.3.2,58609,"10QCD",7112,"CCGTD1_IPS",WBS,"58578",,,,100,Complete,02/07/2020,13/01/2020,07/07/2020,15/01/2020,,,,,257,269,257,269,60,62,60,62,,,"CCGT D1_Integrated Programme Schedule;(OEM) Commissioning;COLD COMMISSIONING;Balance of Systems for First Fire"
1.2.2.3.2-1,CCOM4930,"Ammonia dosing system line up and chemical filling",7112,"CCGTD1_IPS",TT_Task,"58609",-,-,-,100,TK_Complete,02/07/2020,13/01/2020,07/07/2020,15/01/2020,"","","","",257,269,257,269,60,62,60,62,95,,"CCGT D1_Integrated Programme Schedule;(OEM) Commissioning;COLD COMMISSIONING;Balance of Systems for First Fire;10QCD",0,0,0.0,0.0,0.0,5,1.0,0.0000812387,0.0,0.0,0.0,0.0,0.0,0.0112107623,1.0,0.0
1.2.2.3.3,58608,"10ALL",7112,"CCGTD1_IPS",WBS,"58578",,,,100,Complete,02/07/2020,19/12/2019,07/07/2020,19/01/2020,,,,,257,265,257,270,60,62,60,63,,,"CCGT D1_Integrated Programme Schedule;(OEM) Commissioning;COLD COMMISSIONING;Balance of Systems for First Fire"
1.2.2.3.3-1,CCOM4470,"Outage initiation post chem clean, setup of all system isolations",7112,"CCGTD1_IPS",TT_Task,"58608",-,-,-,100,TK_Complete,02/07/2020,19/12/2019,07/07/2020,21/12/2019,"","","CCOM5100 FS","CCOM5100",257,265,257,266,60,62,60,62,94,,"CCGT D1_Integrated Programme Schedule;(OEM) Commissioning;COLD COMMISSIONING;Balance of Systems for First Fire;10ALL",0,1,0.0,0.0002034588,0.0,5,1.0,0.0000812387,0.0,0.0030769231,0.0,0.0005221932,0.0,0.0112107623,1.0,0.0
1.2.2.3.3-2,CCOM5100,"Preparation and line up of all systems for first fire",7112,"CCGTD1_IPS",TT_Task,"58608",-,-,-,100,TK_Complete,02/07/2020,17/01/2020,07/07/2020,19/01/2020,"CCOM4470 FS","CCOM4470","","",257,270,257,270,60,63,60,63,96,,"CCGT D1_Integrated Programme Schedule;(OEM) Commissioning;COLD COMMISSIONING;Balance of Systems for First Fire;10ALL",1,0,0.0,0.0,0.0002034588,5,1.0,0.0001503957,0.0068493151,0.0,0.0,0.0,0.0006435006,0.0112107623,1.0,0.0283369572
1.2.2.3.4,58607,"10PAB",7112,"CCGTD1_IPS",WBS,"58578",,,,100,Complete,02/07/2020,17/12/2019,07/07/2020,18/01/2020,,,,,257,265,257,270,60,61,60,63,,,"CCGT D1_Integrated Programme Schedule;(OEM) Commissioning;COLD COMMISSIONING;Balance of Systems for First Fire"
1.2.2.3.4-1,CCOM4440,"cold commissioning of hydraulic flaps incl system flushing",7112,"CCGTD1_IPS",TT_Task,"58607",-,-,-,100,TK_Complete,02/07/2020,17/12/2019,07/07/2020,21/12/2019,"","","CCOM4450 FS","CCOM4450",257,265,257,266,60,61,60,62,94,,"CCGT D1_Integrated Programme Schedule;(OEM) Commissioning;COLD COMMISSIONING;Balance of Systems for First Fire;10PAB",0,1,0.0,0.001017294,0.0,5,1.0,0.0000812387,0.0,0.0030769231,0.0,0.0026109661,0.0,0.0112107623,1.0,0.0
1.2.2.3.4-2,CCOM4450,"preparation for filling of PAB system",7112,"CCGTD1_IPS",TT_Task,"58607",-,-,-,100,TK_Complete,02/07/2020,19/12/2019,07/07/2020,21/12/2019,"CCOM4440 FS","CCOM4440","CCOM4790 FS","CCOM4790",257,265,257,266,60,62,60,62,94,,"CCGT D1_Integrated Programme Schedule;(OEM) Commissioning;COLD COMMISSIONING;Balance of Systems for First Fire;10PAB",1,1,0.0000001656,0.0008138352,0.0002034588,5,1.0,0.0001503957,0.0068493151,0.0030769231,0.00025,0.0020887728,0.0006435006,0.0112107623,1.0,0.0283369572
1.2.2.3.4-3,CCOM4790,"preparation for filling of PAB system at condenser",7112,"CCGTD1_IPS",TT_Task,"58607",-,-,-,100,TK_Complete,02/07/2020,07/01/2020,07/07/2020,08/01/2020,"CCOM4450 FS","CCOM4450","CCOM4800 FS","CCOM4800",257,268,257,268,60,62,60,62,95,,"CCGT D1_Integrated Programme Schedule;(OEM) Commissioning;COLD COMMISSIONING;Balance of Systems for First Fire;10PAB",1,1,0.0000002484,0.0006103764,0.0004069176,5,1.0,0.000209244,0.0068493151,0.0030769231,0.000375,0.0015665796,0.0012870013,0.0112107623,1.0,0.0524499399
1.2.2.3.4-4,CCOM4800,"system final line up & first pump operation",7112,"CCGTD1_IPS",TT_Task,"58607",-,-,-,100,TK_Complete,02/07/2020,09/01/2020,07/07/2020,11/01/2020,"CCOM4790 FS","CCOM4790","CCOM5080 FS","CCOM5080",257,268,257,269,60,62,60,62,95,,"CCGT D1_Integrated Programme Schedule;(OEM) Commissioning;COLD COMMISSIONING;Balance of Systems for First Fire;10PAB",1,1,0.0000002484,0.0004069176,0.0006103764,5,1.0,0.0002593786,0.0068493151,0.0030769231,0.000375,0.0010443864,0.0019305019,0.0112107623,1.0,0.0729924654
1.2.2.3.4-5,CCOM5080,"PAB System commissioning",7112,"CCGTD1_IPS",TT_Task,"58607",-,-,-,100,TK_Complete,02/07/2020,14/01/2020,07/07/2020,18/01/2020,"CCOM4800 FS","CCOM4800","CCOM5090 FS","CCOM5090",257,269,257,270,60,62,60,63,96,,"CCGT D1_Integrated Programme Schedule;(OEM) Commissioning;COLD COMMISSIONING;Balance of Systems for First Fire;10PAB",1,1,0.0000001656,0.0002034588,0.0008138352,5,1.0,0.0003021254,0.0068493151,0.0030769231,0.00025,0.0005221932,0.0025740026,0.0112107623,1.0,0.0905078876
1.2.2.3.4-6,CCOM5090,"PAB System - First 2 pump operation",7112,"CCGTD1_IPS",TT_Task,"58607",-,-,-,100,TK_Complete,02/07/2020,16/01/2020,07/07/2020,16/01/2020,"CCOM5080 FS","CCOM5080","","",257,269,257,269,60,62,60,62,96,,"CCGT D1_Integrated Programme Schedule;(OEM) Commissioning;COLD COMMISSIONING;Balance of Systems for First Fire;10PAB",1,0,0.0,0.0,0.001017294,5,1.0,0.000338598,0.0068493151,0.0,0.0,0.0,0.0032175032,0.0112107623,1.0,0.1054524737
1.2.2.3.5,58606,"10PAA",7112,"CCGTD1_IPS",WBS,"58578",,,,100,Complete,02/07/2020,09/12/2019,07/07/2020,18/01/2020,,,,,257,264,257,270,60,61,60,63,,,"CCGT D1_Integrated Programme Schedule;(OEM) Commissioning;COLD COMMISSIONING;Balance of Systems for First Fire"
1.2.2.3.5-1,CCOM4250,"Energization of cabinets/components and I&C checks",7112,"CCGTD1_IPS",TT_Task,"58606",-,-,-,100,TK_Complete,02/07/2020,09/12/2019,07/07/2020,14/12/2019,"","","CCOM4420 FS","CCOM4420",257,264,257,265,60,61,60,61,94,,"CCGT D1_Integrated Programme Schedule;(OEM) Commissioning;COLD COMMISSIONING;Balance of Systems for First Fire;10PAA",0,1,0.0,0.0012207528,0.0,5,1.0,0.0000812387,0.0,0.0030769231,0.0,0.0031331593,0.0,0.0112107623,1.0,0.0
1.2.2.3.5-2,CCOM4420,"cold commissioning of intake system",7112,"CCGTD1_IPS",TT_Task,"58606",-,-,-,100,TK_Complete,02/07/2020,16/12/2019,07/07/2020,21/12/2019,"CCOM4250 FS","CCOM4250","CCOM4430 FS","CCOM4430",257,265,257,266,60,61,60,62,94,,"CCGT D1_Integrated Programme Schedule;(OEM) Commissioning;COLD COMMISSIONING;Balance of Systems for First Fire;10PAA",1,1,0.000000207,0.001017294,0.0002034588,5,1.0,0.0001503957,0.0068493151,0.0030769231,0.0003125,0.0026109661,0.0006435006,0.0112107623,1.0,0.0283369572
1.2.2.3.5-3,CCOM4430,"testing of PAC chamber stoplog - dry and wet testing",7112,"CCGTD1_IPS",TT_Task,"58606",-,-,-,100,TK_Complete,02/07/2020,18/12/2019,07/07/2020,21/12/2019,"CCOM4420 FS","CCOM4420","CCOM4760 FS","CCOM4760",257,265,257,266,60,62,60,62,94,,"CCGT D1_Integrated Programme Schedule;(OEM) Commissioning;COLD COMMISSIONING;Balance of Systems for First Fire;10PAA",1,1,0.0000003312,0.0008138352,0.0004069176,5,1.0,0.000209244,0.0068493151,0.0030769231,0.0005,0.0020887728,0.0012870013,0.0112107623,1.0,0.0524499399
1.2.2.3.5-4,CCOM4760,"cold commissioning of intake system",7112,"CCGTD1_IPS",TT_Task,"58606",-,-,-,100,TK_Complete,02/07/2020,06/01/2020,07/07/2020,11/01/2020,"CCOM4430 FS","CCOM4430","CCOM4770 FS","CCOM4770",257,268,257,269,60,62,60,62,95,,"CCGT D1_Integrated Programme Schedule;(OEM) Commissioning;COLD COMMISSIONING;Balance of Systems for First Fire;10PAA",1,1,0.0000003726,0.0006103764,0.0006103764,5,1.0,0.0002593786,0.0068493151,0.0030769231,0.0005625,0.0015665796,0.0019305019,0.0112107623,1.0,0.0729924654
1.2.2.3.5-5,CCOM4770,"flooding of cooling water intake structure and removal of stoplogs",7112,"CCGTD1_IPS",TT_Task,"58606",-,-,-,100,TK_Complete,02/07/2020,07/01/2020,07/07/2020,08/01/2020,"CCOM4760 FS","CCOM4760","CCOM4780 FS","CCOM4780",257,268,257,268,60,62,60,62,95,,"CCGT D1_Integrated Programme Schedule;(OEM) Commissioning;COLD COMMISSIONING;Balance of Systems for First Fire;10PAA",1,1,0.0000003312,0.0004069176,0.0008138352,5,1.0,0.0003021254,0.0068493151,0.0030769231,0.0005,0.0010443864,0.0025740026,0.0112107623,1.0,0.0905078876
1.2.2.3.5-6,CCOM4780,"wet commissioning of intake systems",7112,"CCGTD1_IPS",TT_Task,"58606",-,-,-,100,TK_Complete,02/07/2020,08/01/2020,07/07/2020,11/01/2020,"CCOM4770 FS","CCOM4770","CCOM5070 FS","CCOM5070",257,268,257,269,60,62,60,62,95,,"CCGT D1_Integrated Programme Schedule;(OEM) Commissioning;COLD COMMISSIONING;Balance of Systems for First Fire;10PAA",1,1,0.000000207,0.0002034588,0.001017294,5,1.0,0.000338598,0.0068493151,0.0030769231,0.0003125,0.0005221932,0.0032175032,0.0112107623,1.0,0.1054524737
1.2.2.3.5-7,CCOM5070,"wet commissioning of intake systems",7112,"CCGTD1_IPS",TT_Task,"58606",-,-,-,100,TK_Complete,02/07/2020,15/01/2020,07/07/2020,18/01/2020,"CCOM4780 FS","CCOM4780","","",257,269,257,270,60,62,60,63,96,,"CCGT D1_Integrated Programme Schedule;(OEM) Commissioning;COLD COMMISSIONING;Balance of Systems for First Fire;10PAA",1,0,0.0,0.0,0.0012207528,5,1.0,0.0003696143,0.0068493151,0.0,0.0,0.0,0.0038610039,0.0112107623,1.0,0.1181613545
1.2.2.3.6,58605,"10EGC",7112,"CCGTD1_IPS",WBS,"58578",,,,100,Complete,02/07/2020,09/12/2019,07/07/2020,18/01/2020,,,,,257,264,257,270,60,61,60,63,,,"CCGT D1_Integrated Programme Schedule;(OEM) Commissioning;COLD COMMISSIONING;Balance of Systems for First Fire"
1.2.2.3.6-1,CCOM4320,"Support motor solo runs in fuel oil pumphouse",7112,"CCGTD1_IPS",TT_Task,"58605",-,-,-,100,TK_Complete,02/07/2020,09/12/2019,07/07/2020,12/12/2019,"","","CCOM4410 FS","CCOM4410",257,264,257,264,60,61,60,61,94,,"CCGT D1_Integrated Programme Schedule;(OEM) Commissioning;COLD COMMISSIONING;Balance of Systems for First Fire;10EGC",0,1,0.0,0.0006103764,0.0,5,1.0,0.0000812387,0.0,0.0030769231,0.0,0.0015665796,0.0,0.0112107623,1.0,0.0
1.2.2.3.6-2,CCOM4410,"Finalisation of temporary piping works and system line up for flushing",7112,"CCGTD1_IPS",TT_Task,"58605",-,-,-,100,TK_Complete,02/07/2020,18/12/2019,07/07/2020,21/12/2019,"CCOM4320 FS","CCOM4320","CCOM4750 FS","CCOM4750",257,265,257,266,60,62,60,62,94,,"CCGT D1_Integrated Programme Schedule;(OEM) Commissioning;COLD COMMISSIONING;Balance of Systems for First Fire;10EGC",1,1,0.0000000828,0.0004069176,0.0002034588,5,1.0,0.0001503957,0.0068493151,0.0030769231,0.000125,0.0010443864,0.0006435006,0.0112107623,1.0,0.0283369572
1.2.2.3.6-3,CCOM4750,"Finalisation of temporary piping works and system line up for flushing (after FSD inspection)",7112,"CCGTD1_IPS",TT_Task,"58605",-,-,-,100,TK_Complete,02/07/2020,09/01/2020,07/07/2020,11/01/2020,"CCOM4410 FS","CCOM4410","CCOM5060 FS","CCOM5060",257,268,257,269,60,62,60,62,95,,"CCGT D1_Integrated Programme Schedule;(OEM) Commissioning;COLD COMMISSIONING;Balance of Systems for First Fire;10EGC",1,1,0.0000000828,0.0002034588,0.0004069176,5,1.0,0.000209244,0.0068493151,0.0030769231,0.000125,0.0005221932,0.0012870013,0.0112107623,1.0,0.0524499399
1.2.2.3.6-4,CCOM5060,"Finalisation of temporary piping works and system line up for flushing (after FSD inspection)",7112,"CCGTD1_IPS",TT_Task,"58605",-,-,-,100,TK_Complete,02/07/2020,16/01/2020,07/07/2020,18/01/2020,"CCOM4750 FS","CCOM4750","","",257,269,257,270,60,62,60,63,96,,"CCGT D1_Integrated Programme Schedule;(OEM) Commissioning;COLD COMMISSIONING;Balance of Systems for First Fire;10EGC",1,0,0.0,0.0,0.0006103764,5,1.0,0.0002593786,0.0068493151,0.0,0.0,0.0,0.0019305019,0.0112107623,1.0,0.0729924654
1.2.2.3.7,58604,"10ZTA",7112,"CCGTD1_IPS",WBS,"58578",,,,100,Complete,02/07/2020,29/11/2019,07/07/2020,21/12/2019,,,,,257,263,257,266,60,61,60,62,,,"CCGT D1_Integrated Programme Schedule;(OEM) Commissioning;COLD COMMISSIONING;Balance of Systems for First Fire"
1.2.2.3.7-1,CCOM3710,"Filling, Service test",7112,"CCGTD1_IPS",TT_Task,"58604",-,-,-,100,TK_Complete,02/07/2020,29/11/2019,07/07/2020,30/11/2019,"","","CCOM4270 FS","CCOM4270",257,263,257,263,60,61,60,61,93,,"CCGT D1_Integrated Programme Schedule;(OEM) Commissioning;COLD COMMISSIONING;Balance of Systems for First Fire;10ZTA",0,1,0.0,0.0008138352,0.0,5,1.0,0.0000812387,0.0,0.0030769231,0.0,0.0020887728,0.0,0.0112107623,1.0,0.0
1.2.2.3.7-2,CCOM4270,"Flushing/Chem clean as per schedule",7112,"CCGTD1_IPS",TT_Task,"58604",-,-,-,100,TK_Complete,02/07/2020,10/12/2019,07/07/2020,12/12/2019,"CCOM3710 FS","CCOM3710","CCOM4480 FS","CCOM4480",257,264,257,264,60,61,60,61,94,,"CCGT D1_Integrated Programme Schedule;(OEM) Commissioning;COLD COMMISSIONING;Balance of Systems for First Fire;10ZTA",1,1,0.0000001242,0.0006103764,0.0002034588,5,1.0,0.0001503957,0.0068493151,0.0030769231,0.0001875,0.0015665796,0.0006435006,0.0112107623,1.0,0.0283369572
1.2.2.3.7-3,CCOM4480,"Chem clean as per schedule",7112,"CCGTD1_IPS",TT_Task,"58604",-,-,-,100,TK_Complete,02/07/2020,17/12/2019,07/07/2020,18/12/2019,"CCOM4270 FS","CCOM4270","CCOM4490 FS","CCOM4490",257,265,257,265,60,61,60,62,94,,"CCGT D1_Integrated Programme Schedule;(OEM) Commissioning;COLD COMMISSIONING;Balance of Systems for First Fire;10ZTA",1,1,0.0000001656,0.0004069176,0.0004069176,5,1.0,0.000209244,0.0068493151,0.0030769231,0.00025,0.0010443864,0.0012870013,0.0112107623,1.0,0.0524499399
1.2.2.3.7-4,CCOM4490,"Steam rinsing",7112,"CCGTD1_IPS",TT_Task,"58604",-,-,-,100,TK_Complete,02/07/2020,17/12/2019,07/07/2020,18/12/2019,"CCOM4480 FS","CCOM4480","CCOM4500 FS","CCOM4500",257,265,257,265,60,61,60,62,94,,"CCGT D1_Integrated Programme Schedule;(OEM) Commissioning;COLD COMMISSIONING;Balance of Systems for First Fire;10ZTA",1,1,0.0000001242,0.0002034588,0.0006103764,5,1.0,0.0002593786,0.0068493151,0.0030769231,0.0001875,0.0005221932,0.0019305019,0.0112107623,1.0,0.0729924654
1.2.2.3.7-5,CCOM4500,"initial inspections post chem clean",7112,"CCGTD1_IPS",TT_Task,"58604",-,-,-,100,TK_Complete,02/07/2020,19/12/2019,07/07/2020,21/12/2019,"CCOM4490 FS","CCOM4490","","",257,265,257,266,60,62,60,62,94,,"CCGT D1_Integrated Programme Schedule;(OEM) Commissioning;COLD COMMISSIONING;Balance of Systems for First Fire;10ZTA",1,0,0.0,0.0,0.0008138352,5,1.0,0.0003021254,0.0068493151,0.0,0.0,0.0,0.0025740026,0.0112107623,1.0,0.0905078876
1.2.2.3.8,58603,"10SGC12-14",7112,"CCGTD1_IPS",WBS,"58578",,,,100,Complete,02/07/2020,18/11/2019,07/07/2020,26/11/2019,,,,,257,261,257,262,60,61,60,61,,,"CCGT D1_Integrated Programme Schedule;(OEM) Commissioning;COLD COMMISSIONING;Balance of Systems for First Fire"
1.2.2.3.8-1,CCOM3700,"Spray deluge test for UBE/UBF/UBG",7112,"CCGTD1_IPS",TT_Task,"58603",-,-,-,100,TK_Complete,02/07/2020,18/11/2019,07/07/2020,18/11/2019,"","","CCOM4080 FS","CCOM4080",257,261,257,261,60,61,60,61,93,,"CCGT D1_Integrated Programme Schedule;(OEM) Commissioning;COLD COMMISSIONING;Balance of Systems for First Fire;10SGC12-14",0,1,0.0,0.0002034588,0.0,5,1.0,0.0000812387,0.0,0.0030769231,0.0,0.0005221932,0.0,0.0112107623,1.0,0.0
1.2.2.3.8-2,CCOM4080,"final paint check and touch up where required",7112,"CCGTD1_IPS",TT_Task,"58603",-,-,-,100,TK_Complete,02/07/2020,25/11/2019,07/07/2020,26/11/2019,"CCOM3700 FS","CCOM3700","","",257,262,257,262,60,61,60,61,94,,"CCGT D1_Integrated Programme Schedule;(OEM) Commissioning;COLD COMMISSIONING;Balance of Systems for First Fire;10SGC12-14",1,0,0.0,0.0,0.0002034588,5,1.0,0.0001503957,0.0068493151,0.0,0.0,0.0,0.0006435006,0.0112107623,1.0,0.0283369572
1.2.2.3.9,58602,"10AUX B",7112,"CCGTD1_IPS",WBS,"58578",,,,100,Complete,02/07/2020,18/11/2019,07/07/2020,21/12/2019,,,,,257,261,257,266,60,61,60,62,,,"CCGT D1_Integrated Programme Schedule;(OEM) Commissioning;COLD COMMISSIONING;Balance of Systems for First Fire"
1.2.2.3.9-1,CCOM3690,"Hot commissioning of Aux Boilers and safety valve testing",7112,"CCGTD1_IPS",TT_Task,"58602",-,-,-,100,TK_Complete,02/07/2020,18/11/2019,07/07/2020,23/11/2019,"","","CCOM4070 FS","CCOM4070",257,261,257,262,60,61,60,61,93,,"CCGT D1_Integrated Programme Schedule;(OEM) Commissioning;COLD COMMISSIONING;Balance of Systems for First Fire;10AUX B",0,1,0.0,0.0006103764,0.0,5,1.0,0.0000812387,0.0,0.0030769231,0.0,0.0015665796,0.0,0.0112107623,1.0,0.0
1.2.2.3.9-2,CCOM4070,"ready for operation, pending operational licence",7112,"CCGTD1_IPS",TT_Task,"58602",-,-,-,100,TK_Complete,02/07/2020,25/11/2019,07/07/2020,30/11/2019,"CCOM3690 FS","CCOM3690","CCOM4260 FS","CCOM4260",257,262,257,263,60,61,60,61,94,,"CCGT D1_Integrated Programme Schedule;(OEM) Commissioning;COLD COMMISSIONING;Balance of Systems for First Fire;10AUX B",1,1,0.0000000828,0.0004069176,0.0002034588,5,1.0,0.0001503957,0.0068493151,0.0030769231,0.000125,0.0010443864,0.0006435006,0.0112107623,1.0,0.0283369572
1.2.2.3.9-3,CCOM4260,"Operation for heating up during chemical clean",7112,"CCGTD1_IPS",TT_Task,"58602",-,-,-,100,TK_Complete,02/07/2020,12/12/2019,07/07/2020,14/12/2019,"CCOM4070 FS","CCOM4070","CCOM4460 FS","CCOM4460",257,264,257,265,60,61,60,61,94,,"CCGT D1_Integrated Programme Schedule;(OEM) Commissioning;COLD COMMISSIONING;Balance of Systems for First Fire;10AUX B",1,1,0.0000000828,0.0002034588,0.0004069176,5,1.0,0.000209244,0.0068493151,0.0030769231,0.000125,0.0005221932,0.0012870013,0.0112107623,1.0,0.0524499399
1.2.2.3.9-4,CCOM4460,"Operation for heating up during chemical clean",7112,"CCGTD1_IPS",TT_Task,"58602",-,-,-,100,TK_Complete,02/07/2020,16/12/2019,07/07/2020,21/12/2019,"CCOM4260 FS","CCOM4260","","",257,265,257,266,60,61,60,62,94,,"CCGT D1_Integrated Programme Schedule;(OEM) Commissioning;COLD COMMISSIONING;Balance of Systems for First Fire;10AUX B",1,0,0.0,0.0,0.0006103764,5,1.0,0.0002593786,0.0068493151,0.0,0.0,0.0,0.0019305019,0.0112107623,1.0,0.0729924654
1.2.2.3.10,58601,"10LXX",7112,"CCGTD1_IPS",WBS,"58578",,,,100,Complete,02/07/2020,09/12/2019,07/07/2020,18/01/2020,,,,,257,264,257,270,60,61,60,63,,,"CCGT D1_Integrated Programme Schedule;(OEM) Commissioning;COLD COMMISSIONING;Balance of Systems for First Fire"
1.2.2.3.10-1,CCOM4170,"High velocity flushing as per schedule incl heat up and Chem Clean",7112,"CCGTD1_IPS",TT_Task,"58601",-,-,-,100,TK_Complete,02/07/2020,09/12/2019,07/07/2020,18/12/2019,"","","CCOM4340 FS","CCOM4340",257,264,257,265,60,61,60,62,94,,"CCGT D1_Integrated Programme Schedule;(OEM) Commissioning;COLD COMMISSIONING;Balance of Systems for First Fire;10LXX",0,1,0.0,0.0014242116,0.0,5,0.8,0.0000812387,0.0,0.0030769231,0.0,0.0036553525,0.0,0.0112107623,0.8,0.0
1.2.2.3.10-2,CCOM4340,"Chemical cleaning as per schedule",7112,"CCGTD1_IPS",TT_Task,"58601",-,-,-,100,TK_Complete,02/07/2020,16/12/2019,07/07/2020,18/12/2019,"CCOM4170 FS","CCOM4170","CCOM4620 FS","CCOM4620",257,265,257,265,60,61,60,62,94,,"CCGT D1_Integrated Programme Schedule;(OEM) Commissioning;COLD COMMISSIONING;Balance of Systems for First Fire;10LXX",1,1,0.0000002484,0.0012207528,0.0002034588,5,1.0,0.0001503957,0.0068493151,0.0030769231,0.000375,0.0031331593,0.0006435006,0.0112107623,1.0,0.0283369572
1.2.2.3.10-3,CCOM4620,"Inspections post chem clean",7112,"CCGTD1_IPS",TT_Task,"58601",-,-,-,100,TK_Complete,02/07/2020,06/01/2020,07/07/2020,09/01/2020,"CCOM4340 FS","CCOM4340","CCOM4640 FS","CCOM4640",257,268,257,268,60,62,60,62,95,,"CCGT D1_Integrated Programme Schedule;(OEM) Commissioning;COLD COMMISSIONING;Balance of Systems for First Fire;10LXX",1,1,0.000000414,0.001017294,0.0004069176,5,1.0,0.000209244,0.0068493151,0.0030769231,0.000625,0.0026109661,0.0012870013,0.0112107623,1.0,0.0524499399
1.2.2.3.10-4,CCOM4640,"I&C commissionin of components restored after chem clean",7112,"CCGTD1_IPS",TT_Task,"58601",-,-,-,100,TK_Complete,02/07/2020,06/01/2020,07/07/2020,11/01/2020,"CCOM4620 FS","CCOM4620","CCOM4670 FS","CCOM4670",257,268,257,269,60,62,60,62,95,,"CCGT D1_Integrated Programme Schedule;(OEM) Commissioning;COLD COMMISSIONING;Balance of Systems for First Fire;10LXX",1,1,0.0000004968,0.0008138352,0.0006103764,5,1.0,0.0002593786,0.0068493151,0.0030769231,0.00075,0.0020887728,0.0019305019,0.0112107623,1.0,0.0729924654
1.2.2.3.10-5,CCOM4670,"System line up for filling",7112,"CCGTD1_IPS",TT_Task,"58601",-,-,-,100,TK_Complete,02/07/2020,09/01/2020,07/07/2020,11/01/2020,"CCOM4640 FS","CCOM4640","CCOM4880 FS","CCOM4880",257,268,257,269,60,62,60,62,95,,"CCGT D1_Integrated Programme Schedule;(OEM) Commissioning;COLD COMMISSIONING;Balance of Systems for First Fire;10LXX",1,1,0.0000004968,0.0006103764,0.0008138352,5,1.0,0.0003021254,0.0068493151,0.0030769231,0.00075,0.0015665796,0.0025740026,0.0112107623,1.0,0.0905078876
1.2.2.3.10-6,CCOM4880,"System line up for filling (with QCD)",7112,"CCGTD1_IPS",TT_Task,"58601",-,-,-,100,TK_Complete,02/07/2020,13/01/2020,07/07/2020,15/01/2020,"CCOM4670 FS","CCOM4670","CCOM4920 FS","CCOM4920",257,269,257,269,60,62,60,62,95,,"CCGT D1_Integrated Programme Schedule;(OEM) Commissioning;COLD COMMISSIONING;Balance of Systems for First Fire;10LXX",1,1,0.000000414,0.0004069176,0.001017294,5,1.0,0.000338598,0.0068493151,0.0030769231,0.000625,0.0010443864,0.0032175032,0.0112107623,1.0,0.1054524737
1.2.2.3.10-7,CCOM4900,"Re-filling of HRSG/Water steam",7112,"CCGTD1_IPS",TT_Task,"58601",-,-,-,100,TK_Complete,02/07/2020,16/01/2020,07/07/2020,18/01/2020,"CCOM4920 FS","CCOM4920","","",257,269,257,270,60,62,60,63,95,,"CCGT D1_Integrated Programme Schedule;(OEM) Commissioning;COLD COMMISSIONING;Balance of Systems for First Fire;10LXX",1,0,0.0,0.0,0.0014242116,5,1.0,0.000396007,0.0068493151,0.0,0.0,0.0,0.0045045045,0.0112107623,1.0,0.1289756874
1.2.2.3.10-8,CCOM4920,"I&C commissionin of components restored after chem clean",7112,"CCGTD1_IPS",TT_Task,"58601",-,-,-,100,TK_Complete,02/07/2020,13/01/2020,07/07/2020,18/01/2020,"CCOM4880 FS","CCOM4880","CCOM4900 FS","CCOM4900",257,269,257,270,60,62,60,63,95,,"CCGT D1_Integrated Programme Schedule;(OEM) Commissioning;COLD COMMISSIONING;Balance of Systems for First Fire;10LXX",1,1,0.0000002484,0.0002034588,0.0012207528,5,1.0,0.0003696143,0.0068493151,0.0030769231,0.000375,0.0005221932,0.0038610039,0.0112107623,1.0,0.1181613545
1.2.2.3.11,58600,"10HXX",7112,"CCGTD1_IPS",WBS,"58578",,,,100,Complete,02/07/2020,18/11/2019,07/07/2020,18/01/2020,,,,,257,261,257,270,60,61,60,63,,,"CCGT D1_Integrated Programme Schedule;(OEM) Commissioning;COLD COMMISSIONING;Balance of Systems for First Fire"
1.2.2.3.11-1,CCOM3680,"cold commissioning/system line up for chemical cleaning",7112,"CCGTD1_IPS",TT_Task,"58600",-,-,-,100,TK_Complete,02/07/2020,18/11/2019,07/07/2020,23/11/2019,"","","CCOM3930 FS","CCOM3930",257,261,257,262,60,61,60,61,93,,"CCGT D1_Integrated Programme Schedule;(OEM) Commissioning;COLD COMMISSIONING;Balance of Systems for First Fire;10HXX",0,1,0.0,0.0024415056,0.0,5,1.0,0.0000812387,0.0,0.0030769231,0.0,0.0062663185,0.0,0.0112107623,1.0,0.0
1.2.2.3.11-2,CCOM3930,"initial I&C commissioning",7112,"CCGTD1_IPS",TT_Task,"58600",-,-,-,100,TK_Complete,02/07/2020,20/11/2019,07/07/2020,23/11/2019,"CCOM3680 FS","CCOM3680","CCOM4050 FS","CCOM4050",257,261,257,262,60,61,60,61,93,,"CCGT D1_Integrated Programme Schedule;(OEM) Commissioning;COLD COMMISSIONING;Balance of Systems for First Fire;10HXX",1,1,0.0000004554,0.0022380468,0.0002034588,5,1.0,0.0001503957,0.0068493151,0.0030769231,0.0006875,0.0057441253,0.0006435006,0.0112107623,1.0,0.0283369572
1.2.2.3.11-3,CCOM4050,"initial I&C commissioning",7112,"CCGTD1_IPS",TT_Task,"58600",-,-,-,100,TK_Complete,02/07/2020,25/11/2019,07/07/2020,30/11/2019,"CCOM3930 FS","CCOM3930","CCOM4060 FS","CCOM4060",257,262,257,263,60,61,60,61,94,,"CCGT D1_Integrated Programme Schedule;(OEM) Commissioning;COLD COMMISSIONING;Balance of Systems for First Fire;10HXX",1,1,0.0000008281,0.002034588,0.0004069176,5,1.0,0.000209244,0.0068493151,0.0030769231,0.00125,0.0052219321,0.0012870013,0.0112107623,1.0,0.0524499399
1.2.2.3.11-4,CCOM4060,"cold commissioning/system line up for chemical cleaning",7112,"CCGTD1_IPS",TT_Task,"58600",-,-,-,100,TK_Complete,02/07/2020,25/11/2019,07/07/2020,30/11/2019,"CCOM4050 FS","CCOM4050","CCOM4160 FS","CCOM4160",257,262,257,263,60,61,60,61,94,,"CCGT D1_Integrated Programme Schedule;(OEM) Commissioning;COLD COMMISSIONING;Balance of Systems for First Fire;10HXX",1,1,0.0000011179,0.0018311292,0.0006103764,5,1.0,0.0002593786,0.0068493151,0.0030769231,0.0016875,0.0046997389,0.0019305019,0.0112107623,1.0,0.0729924654
1.2.2.3.11-5,CCOM4160,"High velocity flushing as per schedule incl heat up and Chem Clean",7112,"CCGTD1_IPS",TT_Task,"58600",-,-,-,100,TK_Complete,02/07/2020,09/12/2019,07/07/2020,15/12/2019,"CCOM4060 FS","CCOM4060","CCOM4330 FS","CCOM4330",257,264,257,265,60,61,60,61,94,,"CCGT D1_Integrated Programme Schedule;(OEM) Commissioning;COLD COMMISSIONING;Balance of Systems for First Fire;10HXX",1,1,0.0000013249,0.0016276704,0.0008138352,5,0.6,0.0003021254,0.0068493151,0.0030769231,0.002,0.0041775457,0.0025740026,0.0112107623,0.6,0.0905078876
1.2.2.3.11-6,CCOM4330,"Chemical cleaning as per schedule",7112,"CCGTD1_IPS",TT_Task,"58600",-,-,-,100,TK_Complete,02/07/2020,16/12/2019,07/07/2020,18/12/2019,"CCOM4160 FS","CCOM4160","CCOM4610 FS","CCOM4610",257,265,257,265,60,61,60,62,94,,"CCGT D1_Integrated Programme Schedule;(OEM) Commissioning;COLD COMMISSIONING;Balance of Systems for First Fire;10HXX",1,1,0.0000014491,0.0014242116,0.001017294,5,1.0,0.000338598,0.0068493151,0.0030769231,0.0021875,0.0036553525,0.0032175032,0.0112107623,1.0,0.1054524737
1.2.2.3.11-7,CCOM4610,"Inspections post chem clean",7112,"CCGTD1_IPS",TT_Task,"58600",-,-,-,100,TK_Complete,02/07/2020,06/01/2020,07/07/2020,09/01/2020,"CCOM4330 FS","CCOM4330","CCOM4630 FS","CCOM4630",257,268,257,268,60,62,60,62,95,,"CCGT D1_Integrated Programme Schedule;(OEM) Commissioning;COLD COMMISSIONING;Balance of Systems for First Fire;10HXX",1,1,0.0000014905,0.0012207528,0.0012207528,5,1.0,0.0003696143,0.0068493151,0.0030769231,0.00225,0.0031331593,0.0038610039,0.0112107623,1.0,0.1181613545
1.2.2.3.11-8,CCOM4630,"I&C commissionin of components restored after chem clean",7112,"CCGTD1_IPS",TT_Task,"58600",-,-,-,100,TK_Complete,02/07/2020,06/01/2020,07/07/2020,11/01/2020,"CCOM4610 FS","CCOM4610","CCOM4650 FS","CCOM4650",257,268,257,269,60,62,60,62,95,,"CCGT D1_Integrated Programme Schedule;(OEM) Commissioning;COLD COMMISSIONING;Balance of Systems for First Fire;10HXX",1,1,0.0000014491,0.001017294,0.0014242116,5,1.0,0.000396007,0.0068493151,0.0030769231,0.0021875,0.0026109661,0.0045045045,0.0112107623,1.0,0.1289756874
1.2.2.3.11-9,CCOM4650,"HRSG protection testing",7112,"CCGTD1_IPS",TT_Task,"58600",-,-,-,100,TK_Complete,02/07/2020,09/01/2020,07/07/2020,11/01/2020,"CCOM4630 FS","CCOM4630","CCOM4660 FS","CCOM4660",257,268,257,269,60,62,60,62,95,,"CCGT D1_Integrated Programme Schedule;(OEM) Commissioning;COLD COMMISSIONING;Balance of Systems for First Fire;10HXX",1,1,0.0000013249,0.0008138352,0.0016276704,5,1.0,0.0004185845,0.0068493151,0.0030769231,0.002,0.0020887728,0.0051480051,0.0112107623,1.0,0.1382268136
1.2.2.3.11-10,CCOM4660,"System line up for filling",7112,"CCGTD1_IPS",TT_Task,"58600",-,-,-,100,TK_Complete,02/07/2020,09/01/2020,07/07/2020,11/01/2020,"CCOM4650 FS","CCOM4650","CCOM4870 FS","CCOM4870",257,268,257,269,60,62,60,62,95,,"CCGT D1_Integrated Programme Schedule;(OEM) Commissioning;COLD COMMISSIONING;Balance of Systems for First Fire;10HXX",1,1,0.0000011179,0.0006103764,0.0018311292,5,1.0,0.0004384472,0.0068493151,0.0030769231,0.0016875,0.0015665796,0.0057915058,0.0112107623,1.0,0.1463655131
1.2.2.3.11-11,CCOM4870,"System line up for filling (with QCD)",7112,"CCGTD1_IPS",TT_Task,"58600",-,-,-,100,TK_Complete,02/07/2020,13/01/2020,07/07/2020,15/01/2020,"CCOM4660 FS","CCOM4660","CCOM4910 FS","CCOM4910",257,269,257,269,60,62,60,62,95,,"CCGT D1_Integrated Programme Schedule;(OEM) Commissioning;COLD COMMISSIONING;Balance of Systems for First Fire;10HXX",1,1,0.0000008281,0.0004069176,0.002034588,5,1.0,0.0004561636,0.0068493151,0.0030769231,0.00125,0.0010443864,0.0064350064,0.0112107623,1.0,0.1536247638
1.2.2.3.11-12,CCOM4890,"Re-filling of HRSG/Water steam",7112,"CCGTD1_IPS",TT_Task,"58600",-,-,-,100,TK_Complete,02/07/2020,16/01/2020,07/07/2020,18/01/2020,"CCOM4910 FS","CCOM4910","","",257,269,257,270,60,62,60,63,95,,"CCGT D1_Integrated Programme Schedule;(OEM) Commissioning;COLD COMMISSIONING;Balance of Systems for First Fire;10HXX",1,0,0.0,0.0,0.0024415056,5,1.0,0.0004902041,0.0068493151,0.0,0.0,0.0,0.0077220077,0.0112107623,1.0,0.1675728062
1.2.2.3.11-13,CCOM4910,"I&C commissionin of components restored after chem clean",7112,"CCGTD1_IPS",TT_Task,"58600",-,-,-,100,TK_Complete,02/07/2020,13/01/2020,07/07/2020,18/01/2020,"CCOM4870 FS","CCOM4870","CCOM4890 FS","CCOM4890",257,269,257,270,60,62,60,63,95,,"CCGT D1_Integrated Programme Schedule;(OEM) Commissioning;COLD COMMISSIONING;Balance of Systems for First Fire;10HXX",1,1,0.0000004554,0.0002034588,0.0022380468,5,1.0,0.0004902041,0.0068493151,0.0030769231,0.0006875,0.0005221932,0.0070785071,0.0112107623,1.0,0.1675728062
1.2.2.3.12,58599,"10EK",7112,"CCGTD1_IPS",WBS,"58578",,,,100,Complete,02/07/2020,17/12/2019,07/07/2020,18/01/2020,,,,,257,265,257,270,60,61,60,63,,,"CCGT D1_Integrated Programme Schedule;(OEM) Commissioning;COLD COMMISSIONING;Balance of Systems for First Fire"
1.2.2.3.12-1,CCOM4400,"Cold commissioning, I&C checks with vendor TFA",7112,"CCGTD1_IPS",TT_Task,"58599",-,-,-,100,TK_Complete,02/07/2020,17/12/2019,07/07/2020,21/12/2019,"","","CCOM4740 FS","CCOM4740",257,265,257,266,60,61,60,62,94,,"CCGT D1_Integrated Programme Schedule;(OEM) Commissioning;COLD COMMISSIONING;Balance of Systems for First Fire;10EK",0,1,0.0,0.0006103764,0.0,5,1.0,0.0000812387,0.0,0.0030769231,0.0,0.0015665796,0.0,0.0112107623,1.0,0.0
1.2.2.3.12-2,CCOM4740,"Cold commissioning, I&C checks with vendor TFA",7112,"CCGTD1_IPS",TT_Task,"58599",-,-,-,100,TK_Complete,02/07/2020,07/01/2020,07/07/2020,11/01/2020,"CCOM4400 FS","CCOM4400","CCOM5040 FS","CCOM5040",257,268,257,269,60,62,60,62,95,,"CCGT D1_Integrated Programme Schedule;(OEM) Commissioning;COLD COMMISSIONING;Balance of Systems for First Fire;10EK",1,1,0.0000000828,0.0004069176,0.0002034588,5,1.0,0.0001503957,0.0068493151,0.0030769231,0.000125,0.0010443864,0.0006435006,0.0112107623,1.0,0.0283369572
1.2.2.3.12-3,CCOM5040,"Cold commissioning, I&C checks with vendor TFA",7112,"CCGTD1_IPS",TT_Task,"58599",-,-,-,100,TK_Complete,02/07/2020,13/01/2020,07/07/2020,18/01/2020,"CCOM4740 FS","CCOM4740","CCOM5050 FS","CCOM5050",257,269,257,270,60,62,60,63,96,,"CCGT D1_Integrated Programme Schedule;(OEM) Commissioning;COLD COMMISSIONING;Balance of Systems for First Fire;10EK",1,1,0.0000000828,0.0002034588,0.0004069176,5,1.0,0.000209244,0.0068493151,0.0030769231,0.000125,0.0005221932,0.0012870013,0.0112107623,1.0,0.0524499399
1.2.2.3.12-4,CCOM5050,"System line up for purging/gas charging",7112,"CCGTD1_IPS",TT_Task,"58599",-,-,-,100,TK_Complete,02/07/2020,16/01/2020,07/07/2020,18/01/2020,"CCOM5040 FS","CCOM5040","","",257,269,257,270,60,62,60,63,96,,"CCGT D1_Integrated Programme Schedule;(OEM) Commissioning;COLD COMMISSIONING;Balance of Systems for First Fire;10EK",1,0,0.0,0.0,0.0006103764,5,1.0,0.0002593786,0.0068493151,0.0,0.0,0.0,0.0019305019,0.0112107623,1.0,0.0729924654
1.2.2.3.13,58598,"10TOP",7112,"CCGTD1_IPS",WBS,"58578",,,,100,Complete,02/07/2020,19/11/2019,07/07/2020,18/01/2020,,,,,257,261,257,270,60,61,60,63,,,"CCGT D1_Integrated Programme Schedule;(OEM) Commissioning;COLD COMMISSIONING;Balance of Systems for First Fire"
1.2.2.3.13-1,CCOM3670,"TOP Walkdowns as per IFIs",7112,"CCGTD1_IPS",TT_Task,"58598",-,-,-,100,TK_Complete,02/07/2020,19/11/2019,07/07/2020,23/11/2019,"","","CCOM4040 FS","CCOM4040",257,261,257,262,60,61,60,61,93,,"CCGT D1_Integrated Programme Schedule;(OEM) Commissioning;COLD COMMISSIONING;Balance of Systems for First Fire;10TOP",0,1,0.0,0.001017294,0.0,5,1.0,0.0000812387,0.0,0.0030769231,0.0,0.0026109661,0.0,0.0112107623,1.0,0.0
1.2.2.3.13-2,CCOM4040,"TOP Walkdowns as per IFIs",7112,"CCGTD1_IPS",TT_Task,"58598",-,-,-,100,TK_Complete,02/07/2020,25/11/2019,07/07/2020,30/11/2019,"CCOM3670 FS","CCOM3670","CCOM4230 FS","CCOM4230",257,262,257,263,60,61,60,61,94,,"CCGT D1_Integrated Programme Schedule;(OEM) Commissioning;COLD COMMISSIONING;Balance of Systems for First Fire;10TOP",1,1,0.0000001656,0.0008138352,0.0002034588,5,1.0,0.0001503957,0.0068493151,0.0030769231,0.00025,0.0020887728,0.0006435006,0.0112107623,1.0,0.0283369572
1.2.2.3.13-3,CCOM4230,"TOP Walkdowns as per IFIs",7112,"CCGTD1_IPS",TT_Task,"58598",-,-,-,100,TK_Complete,02/07/2020,09/12/2019,07/07/2020,14/12/2019,"CCOM4040 FS","CCOM4040","CCOM4390 FS","CCOM4390",257,264,257,265,60,61,60,61,94,,"CCGT D1_Integrated Programme Schedule;(OEM) Commissioning;COLD COMMISSIONING;Balance of Systems for First Fire;10TOP",1,1,0.0000002484,0.0006103764,0.0004069176,5,1.0,0.000209244,0.0068493151,0.0030769231,0.000375,0.0015665796,0.0012870013,0.0112107623,1.0,0.0524499399
1.2.2.3.13-4,CCOM4390,"TOP Walkdowns as per IFIs",7112,"CCGTD1_IPS",TT_Task,"58598",-,-,-,100,TK_Complete,02/07/2020,16/12/2019,07/07/2020,21/12/2019,"CCOM4230 FS","CCOM4230","CCOM4730 FS","CCOM4730",257,265,257,266,60,61,60,62,94,,"CCGT D1_Integrated Programme Schedule;(OEM) Commissioning;COLD COMMISSIONING;Balance of Systems for First Fire;10TOP",1,1,0.0000002484,0.0004069176,0.0006103764,5,1.0,0.0002593786,0.0068493151,0.0030769231,0.000375,0.0010443864,0.0019305019,0.0112107623,1.0,0.0729924654
1.2.2.3.13-5,CCOM4730,"TOP Walkdowns as per IFIs",7112,"CCGTD1_IPS",TT_Task,"58598",-,-,-,100,TK_Complete,02/07/2020,06/01/2020,07/07/2020,11/01/2020,"CCOM4390 FS","CCOM4390","CCOM5030 FS","CCOM5030",257,268,257,269,60,62,60,62,95,,"CCGT D1_Integrated Programme Schedule;(OEM) Commissioning;COLD COMMISSIONING;Balance of Systems for First Fire;10TOP",1,1,0.0000001656,0.0002034588,0.0008138352,5,1.0,0.0003021254,0.0068493151,0.0030769231,0.00025,0.0005221932,0.0025740026,0.0112107623,1.0,0.0905078876
1.2.2.3.13-6,CCOM5030,"TOP Walkdowns as per IFIs",7112,"CCGTD1_IPS",TT_Task,"58598",-,-,-,100,TK_Complete,02/07/2020,13/01/2020,07/07/2020,18/01/2020,"CCOM4730 FS","CCOM4730","","",257,269,257,270,60,62,60,63,96,,"CCGT D1_Integrated Programme Schedule;(OEM) Commissioning;COLD COMMISSIONING;Balance of Systems for First Fire;10TOP",1,0,0.0,0.0,0.001017294,5,1.0,0.000338598,0.0068493151,0.0,0.0,0.0,0.0032175032,0.0112107623,1.0,0.1054524737
1.2.2.3.14,58597,"10MKA",7112,"CCGTD1_IPS",WBS,"58578",,,,100,Complete,02/07/2020,17/12/2019,07/07/2020,21/12/2019,,,,,257,265,257,266,60,61,60,62,,,"CCGT D1_Integrated Programme Schedule;(OEM) Commissioning;COLD COMMISSIONING;Balance of Systems for First Fire"
1.2.2.3.14-1,CCOM4380,"Continuatuion of air leak testing",7112,"CCGTD1_IPS",TT_Task,"58597",-,-,-,100,TK_Complete,02/07/2020,17/12/2019,07/07/2020,21/12/2019,"","","","",257,265,257,266,60,61,60,62,94,,"CCGT D1_Integrated Programme Schedule;(OEM) Commissioning;COLD COMMISSIONING;Balance of Systems for First Fire;10MKA",0,0,0.0,0.0,0.0,5,1.0,0.0000812387,0.0,0.0,0.0,0.0,0.0,0.0112107623,1.0,0.0
1.2.2.3.15,58596,"10MKW",7112,"CCGTD1_IPS",WBS,"58578",,,,100,Complete,02/07/2020,20/11/2019,07/07/2020,21/12/2019,,,,,257,261,257,266,60,61,60,62,,,"CCGT D1_Integrated Programme Schedule;(OEM) Commissioning;COLD COMMISSIONING;Balance of Systems for First Fire"
1.2.2.3.15-1,CCOM3650,"System operation to support GT turning gear",7112,"CCGTD1_IPS",TT_Task,"58596",-,-,-,100,TK_Complete,02/07/2020,20/11/2019,07/07/2020,23/11/2019,"","","CCOM4030 FS","CCOM4030",257,261,257,262,60,61,60,61,93,,"CCGT D1_Integrated Programme Schedule;(OEM) Commissioning;COLD COMMISSIONING;Balance of Systems for First Fire;10MKW",0,1,0.0,0.0006103764,0.0,5,1.0,0.0000812387,0.0,0.0030769231,0.0,0.0015665796,0.0,0.0112107623,1.0,0.0
1.2.2.3.15-2,CCOM4030,"System operation to support GT turning gear",7112,"CCGTD1_IPS",TT_Task,"58596",-,-,-,100,TK_Complete,02/07/2020,27/11/2019,07/07/2020,30/11/2019,"CCOM3650 FS","CCOM3650","CCOM4220 FS","CCOM4220",257,262,257,263,60,61,60,61,94,,"CCGT D1_Integrated Programme Schedule;(OEM) Commissioning;COLD COMMISSIONING;Balance of Systems for First Fire;10MKW",1,1,0.0000000828,0.0004069176,0.0002034588,5,1.0,0.0001503957,0.0068493151,0.0030769231,0.000125,0.0010443864,0.0006435006,0.0112107623,1.0,0.0283369572
1.2.2.3.15-3,CCOM4220,"System operation to support GT turning gear and fact finding on MKW12AP001",7112,"CCGTD1_IPS",TT_Task,"58596",-,-,-,100,TK_Complete,02/07/2020,09/12/2019,07/07/2020,14/12/2019,"CCOM4030 FS","CCOM4030","CCOM4370 FS","CCOM4370",257,264,257,265,60,61,60,61,94,,"CCGT D1_Integrated Programme Schedule;(OEM) Commissioning;COLD COMMISSIONING;Balance of Systems for First Fire;10MKW",1,1,0.0000000828,0.0002034588,0.0004069176,5,1.0,0.000209244,0.0068493151,0.0030769231,0.000125,0.0005221932,0.0012870013,0.0112107623,1.0,0.0524499399
1.2.2.3.15-4,CCOM4370,"System operation to support GT turning gear and fact  finding on MKW12AP001",7112,"CCGTD1_IPS",TT_Task,"58596",-,-,-,100,TK_Complete,02/07/2020,16/12/2019,07/07/2020,21/12/2019,"CCOM4220 FS","CCOM4220","","",257,265,257,266,60,61,60,62,94,,"CCGT D1_Integrated Programme Schedule;(OEM) Commissioning;COLD COMMISSIONING;Balance of Systems for First Fire;10MKW",1,0,0.0,0.0,0.0006103764,5,1.0,0.0002593786,0.0068493151,0.0,0.0,0.0,0.0019305019,0.0112107623,1.0,0.0729924654
1.2.2.3.16,58595,"10MKG",7112,"CCGTD1_IPS",WBS,"58578",,,,100,Complete,02/07/2020,09/01/2020,07/07/2020,18/01/2020,,,,,257,268,257,270,60,62,60,63,,,"CCGT D1_Integrated Programme Schedule;(OEM) Commissioning;COLD COMMISSIONING;Balance of Systems for First Fire"
1.2.2.3.16-1,CCOM3660,"Preparation and system line up for CO2 purging",7112,"CCGTD1_IPS",TT_Task,"58595",-,-,-,100,TK_Complete,02/07/2020,09/01/2020,07/07/2020,11/01/2020,"","","CCOM5010 FS","CCOM5010",257,268,257,269,60,62,60,62,93,,"CCGT D1_Integrated Programme Schedule;(OEM) Commissioning;COLD COMMISSIONING;Balance of Systems for First Fire;10MKG",0,1,0.0,0.0004069176,0.0,5,1.0,0.0000812387,0.0,0.0030769231,0.0,0.0010443864,0.0,0.0112107623,1.0,0.0
1.2.2.3.16-2,CCOM5010,"Preparation and system line up for CO2 purging",7112,"CCGTD1_IPS",TT_Task,"58595",-,-,-,100,TK_Complete,02/07/2020,13/01/2020,07/07/2020,14/01/2020,"CCOM3660 FS","CCOM3660","CCOM5020 FS","CCOM5020",257,269,257,269,60,62,60,62,95,,"CCGT D1_Integrated Programme Schedule;(OEM) Commissioning;COLD COMMISSIONING;Balance of Systems for First Fire;10MKG",1,1,0.0000000414,0.0002034588,0.0002034588,5,1.0,0.0001503957,0.0068493151,0.0030769231,0.0000625,0.0005221932,0.0006435006,0.0112107623,1.0,0.0283369572
1.2.2.3.16-3,CCOM5020,"H2 Charging (Date TBC)",7112,"CCGTD1_IPS",TT_Task,"58595",-,-,-,100,TK_Complete,02/07/2020,18/01/2020,07/07/2020,18/01/2020,"CCOM5010 FS","CCOM5010","","",257,270,257,270,60,63,60,63,96,,"CCGT D1_Integrated Programme Schedule;(OEM) Commissioning;COLD COMMISSIONING;Balance of Systems for First Fire;10MKG",1,0,0.0,0.0,0.0004069176,5,1.0,0.000209244,0.0068493151,0.0,0.0,0.0,0.0012870013,0.0112107623,1.0,0.0524499399
1.2.2.3.17,58594,"10MAG",7112,"CCGTD1_IPS",WBS,"58578",,,,100,Complete,02/07/2020,18/11/2019,07/07/2020,18/01/2020,,,,,257,261,257,270,60,61,60,63,,,"CCGT D1_Integrated Programme Schedule;(OEM) Commissioning;COLD COMMISSIONING;Balance of Systems for First Fire"
1.2.2.3.17-1,CCOM3640,"cold commissioning and first filling",7112,"CCGTD1_IPS",TT_Task,"58594",-,-,-,100,TK_Complete,02/07/2020,18/11/2019,07/07/2020,23/11/2019,"","","CCOM4020 FS","CCOM4020",257,261,257,262,60,61,60,61,93,,"CCGT D1_Integrated Programme Schedule;(OEM) Commissioning;COLD COMMISSIONING;Balance of Systems for First Fire;10MAG",0,1,0.0,0.001017294,0.0,5,1.0,0.0000812387,0.0,0.0030769231,0.0,0.0026109661,0.0,0.0112107623,1.0,0.0
1.2.2.3.17-2,CCOM4020,"cold commissioning and first filling",7112,"CCGTD1_IPS",TT_Task,"58594",-,-,-,100,TK_Complete,02/07/2020,25/11/2019,07/07/2020,30/11/2019,"CCOM3640 FS","CCOM3640","CCOM4690 FS","CCOM4690",257,262,257,263,60,61,60,61,93,,"CCGT D1_Integrated Programme Schedule;(OEM) Commissioning;COLD COMMISSIONING;Balance of Systems for First Fire;10MAG",1,1,0.0000001656,0.0008138352,0.0002034588,5,1.0,0.0001503957,0.0068493151,0.0030769231,0.00025,0.0020887728,0.0006435006,0.0112107623,1.0,0.0283369572
1.2.2.3.17-3,CCOM4690,"Condenser cleaning",7112,"CCGTD1_IPS",TT_Task,"58594",-,-,-,100,TK_Complete,02/07/2020,06/01/2020,07/07/2020,08/01/2020,"CCOM4020 FS","CCOM4020","CCOM4700 FS","CCOM4700",257,268,257,268,60,62,60,62,95,,"CCGT D1_Integrated Programme Schedule;(OEM) Commissioning;COLD COMMISSIONING;Balance of Systems for First Fire;10MAG",1,1,0.0000002484,0.0006103764,0.0004069176,5,1.0,0.000209244,0.0068493151,0.0030769231,0.000375,0.0015665796,0.0012870013,0.0112107623,1.0,0.0524499399
1.2.2.3.17-4,CCOM4700,"Condenser protection testing",7112,"CCGTD1_IPS",TT_Task,"58594",-,-,-,100,TK_Complete,02/07/2020,06/01/2020,07/07/2020,07/01/2020,"CCOM4690 FS","CCOM4690","CCOM4990 FS","CCOM4990",257,268,257,268,60,62,60,62,95,,"CCGT D1_Integrated Programme Schedule;(OEM) Commissioning;COLD COMMISSIONING;Balance of Systems for First Fire;10MAG",1,1,0.0000002484,0.0004069176,0.0006103764,5,1.0,0.0002593786,0.0068493151,0.0030769231,0.000375,0.0010443864,0.0019305019,0.0112107623,1.0,0.0729924654
1.2.2.3.17-5,CCOM4990,"Condenser filling",7112,"CCGTD1_IPS",TT_Task,"58594",-,-,-,100,TK_Complete,02/07/2020,15/01/2020,07/07/2020,15/01/2020,"CCOM4700 FS","CCOM4700","CCOM5000 FS","CCOM5000",257,269,257,269,60,62,60,62,95,,"CCGT D1_Integrated Programme Schedule;(OEM) Commissioning;COLD COMMISSIONING;Balance of Systems for First Fire;10MAG",1,1,0.0000001656,0.0002034588,0.0008138352,5,1.0,0.0003021254,0.0068493151,0.0030769231,0.00025,0.0005221932,0.0025740026,0.0112107623,1.0,0.0905078876
1.2.2.3.17-6,CCOM5000,"First vacuum pulling",7112,"CCGTD1_IPS",TT_Task,"58594",-,-,-,100,TK_Complete,02/07/2020,16/01/2020,07/07/2020,18/01/2020,"CCOM4990 FS","CCOM4990","","",257,269,257,270,60,62,60,63,95,,"CCGT D1_Integrated Programme Schedule;(OEM) Commissioning;COLD COMMISSIONING;Balance of Systems for First Fire;10MAG",1,0,0.0,0.0,0.001017294,5,1.0,0.000338598,0.0068493151,0.0,0.0,0.0,0.0032175032,0.0112107623,1.0,0.1054524737
1.2.2.3.18,58593,"10LBG",7112,"CCGTD1_IPS",WBS,"58578",,,,100,Complete,02/07/2020,20/11/2019,07/07/2020,18/01/2020,,,,,257,261,257,270,60,61,60,63,,,"CCGT D1_Integrated Programme Schedule;(OEM) Commissioning;COLD COMMISSIONING;Balance of Systems for First Fire"
1.2.2.3.18-1,CCOM3630,"Initial cold commissioning - signal checks",7112,"CCGTD1_IPS",TT_Task,"58593",-,-,-,100,TK_Complete,02/07/2020,20/11/2019,07/07/2020,23/11/2019,"","","CCOM4000 FS","CCOM4000",257,261,257,262,60,61,60,61,93,,"CCGT D1_Integrated Programme Schedule;(OEM) Commissioning;COLD COMMISSIONING;Balance of Systems for First Fire;10LBG",0,1,0.0,0.0014242116,0.0,5,1.0,0.0000812387,0.0,0.0030769231,0.0,0.0036553525,0.0,0.0112107623,1.0,0.0
1.2.2.3.18-2,CCOM4000,"Initial cold commissioning, signal checks, system line up for aux. Steam blow (pending TOP)",7112,"CCGTD1_IPS",TT_Task,"58593",-,-,-,100,TK_Complete,02/07/2020,27/11/2019,07/07/2020,30/11/2019,"CCOM3630 FS","CCOM3630","CCOM4010 FS","CCOM4010",257,262,257,263,60,61,60,61,93,,"CCGT D1_Integrated Programme Schedule;(OEM) Commissioning;COLD COMMISSIONING;Balance of Systems for First Fire;10LBG",1,1,0.0000002484,0.0012207528,0.0002034588,5,1.0,0.0001503957,0.0068493151,0.0030769231,0.000375,0.0031331593,0.0006435006,0.0112107623,1.0,0.0283369572
1.2.2.3.18-3,CCOM4010,"Aux. Steam Blow",7112,"CCGTD1_IPS",TT_Task,"58593",-,-,-,100,TK_Complete,02/07/2020,30/11/2019,07/07/2020,01/12/2019,"CCOM4000 FS","CCOM4000","CCOM4200 FS","CCOM4200",257,263,257,263,60,61,60,61,93,,"CCGT D1_Integrated Programme Schedule;(OEM) Commissioning;COLD COMMISSIONING;Balance of Systems for First Fire;10LBG",1,1,0.000000414,0.001017294,0.0004069176,5,1.0,0.000209244,0.0068493151,0.0030769231,0.000625,0.0026109661,0.0012870013,0.0112107623,1.0,0.0524499399
1.2.2.3.18-4,CCOM4200,"System restoration after steam blow",7112,"CCGTD1_IPS",TT_Task,"58593",-,-,-,100,TK_Complete,02/07/2020,09/12/2019,07/07/2020,11/12/2019,"CCOM4010 FS","CCOM4010","CCOM4210 FS","CCOM4210",257,264,257,264,60,61,60,61,94,,"CCGT D1_Integrated Programme Schedule;(OEM) Commissioning;COLD COMMISSIONING;Balance of Systems for First Fire;10LBG",1,1,0.0000004968,0.0008138352,0.0006103764,5,1.0,0.0002593786,0.0068493151,0.0030769231,0.00075,0.0020887728,0.0019305019,0.0112107623,1.0,0.0729924654
1.2.2.3.18-5,CCOM4210,"System operation for heat up prior to chemical cleaning",7112,"CCGTD1_IPS",TT_Task,"58593",-,-,-,100,TK_Complete,02/07/2020,12/12/2019,07/07/2020,14/12/2019,"CCOM4200 FS","CCOM4200","CCOM4360 FS","CCOM4360",257,264,257,265,60,61,60,61,94,,"CCGT D1_Integrated Programme Schedule;(OEM) Commissioning;COLD COMMISSIONING;Balance of Systems for First Fire;10LBG",1,1,0.0000004968,0.0006103764,0.0008138352,5,1.0,0.0003021254,0.0068493151,0.0030769231,0.00075,0.0015665796,0.0025740026,0.0112107623,1.0,0.0905078876
1.2.2.3.18-6,CCOM4360,"System restoration after steam blow",7112,"CCGTD1_IPS",TT_Task,"58593",-,-,-,100,TK_Complete,02/07/2020,16/12/2019,07/07/2020,18/12/2019,"CCOM4210 FS","CCOM4210","CCOM4680 FS","CCOM4680",257,265,257,265,60,61,60,62,94,,"CCGT D1_Integrated Programme Schedule;(OEM) Commissioning;COLD COMMISSIONING;Balance of Systems for First Fire;10LBG",1,1,0.000000414,0.0004069176,0.001017294,5,1.0,0.000338598,0.0068493151,0.0030769231,0.000625,0.0010443864,0.0032175032,0.0112107623,1.0,0.1054524737
1.2.2.3.18-7,CCOM4680,"System restoration",7112,"CCGTD1_IPS",TT_Task,"58593",-,-,-,100,TK_Complete,02/07/2020,06/01/2020,07/07/2020,08/01/2020,"CCOM4360 FS","CCOM4360","CCOM4960 FS","CCOM4960",257,268,257,268,60,62,60,62,95,,"CCGT D1_Integrated Programme Schedule;(OEM) Commissioning;COLD COMMISSIONING;Balance of Systems for First Fire;10LBG",1,1,0.0000002484,0.0002034588,0.0012207528,5,1.0,0.0003696143,0.0068493151,0.0030769231,0.000375,0.0005221932,0.0038610039,0.0112107623,1.0,0.1181613545
1.2.2.3.18-8,CCOM4960,"System operation with Aux Boiler for seal steam comm",7112,"CCGTD1_IPS",TT_Task,"58593",-,-,-,100,TK_Complete,02/07/2020,16/01/2020,07/07/2020,18/01/2020,"CCOM4680 FS","CCOM4680","","",257,269,257,270,60,62,60,63,95,,"CCGT D1_Integrated Programme Schedule;(OEM) Commissioning;COLD COMMISSIONING;Balance of Systems for First Fire;10LBG",1,0,0.0,0.0,0.0014242116,5,1.0,0.000396007,0.0068493151,0.0,0.0,0.0,0.0045045045,0.0112107623,1.0,0.1289756874
1.2.2.3.19,58592,"10LDK",7112,"CCGTD1_IPS",WBS,"58578",,,,100,Complete,02/07/2020,20/11/2019,07/07/2020,30/11/2019,,,,,257,261,257,263,60,61,60,61,,,"CCGT D1_Integrated Programme Schedule;(OEM) Commissioning;COLD COMMISSIONING;Balance of Systems for First Fire"
1.2.2.3.19-1,CCOM3620,"cold commissioning and system setup for filling of condenser",7112,"CCGTD1_IPS",TT_Task,"58592",-,-,-,100,TK_Complete,02/07/2020,20/11/2019,07/07/2020,23/11/2019,"","","CCOM3990 FS","CCOM3990",257,261,257,262,60,61,60,61,93,,"CCGT D1_Integrated Programme Schedule;(OEM) Commissioning;COLD COMMISSIONING;Balance of Systems for First Fire;10LDK",0,1,0.0,0.0002034588,0.0,5,1.0,0.0000812387,0.0,0.0030769231,0.0,0.0005221932,0.0,0.0112107623,1.0,0.0
1.2.2.3.19-2,CCOM3990,"cold commissioning and system setup for filling of condenser (pending TOP)",7112,"CCGTD1_IPS",TT_Task,"58592",-,-,-,100,TK_Complete,02/07/2020,27/11/2019,07/07/2020,30/11/2019,"CCOM3620 FS","CCOM3620","","",257,262,257,263,60,61,60,61,93,,"CCGT D1_Integrated Programme Schedule;(OEM) Commissioning;COLD COMMISSIONING;Balance of Systems for First Fire;10LDK",1,0,0.0,0.0,0.0002034588,5,1.0,0.0001503957,0.0068493151,0.0,0.0,0.0,0.0006435006,0.0112107623,1.0,0.0283369572
1.2.2.3.20,58591,"10LCL",7112,"CCGTD1_IPS",WBS,"58578",,,,100,Complete,02/07/2020,30/10/2019,07/07/2020,21/12/2019,,,,,257,258,257,266,60,60,60,62,,,"CCGT D1_Integrated Programme Schedule;(OEM) Commissioning;COLD COMMISSIONING;Balance of Systems for First Fire"
1.2.2.3.20-1,CCOM3900,"TOP pending - cold commissioning",7112,"CCGTD1_IPS",TT_Task,"58591",-,-,-,100,TK_Complete,02/07/2020,30/10/2019,07/07/2020,31/10/2019,"","","CCOM3910 FS","CCOM3910",257,258,257,258,60,60,60,60,93,,"CCGT D1_Integrated Programme Schedule;(OEM) Commissioning;COLD COMMISSIONING;Balance of Systems for First Fire;10LCL",0,1,0.0,0.001017294,0.0,5,1.0,0.0000812387,0.0,0.0030769231,0.0,0.0026109661,0.0,0.0112107623,1.0,0.0
1.2.2.3.20-2,CCOM3910,"cold commissioning (pending TOP)",7112,"CCGTD1_IPS",TT_Task,"58591",-,-,-,100,TK_Complete,02/07/2020,11/11/2019,07/07/2020,16/11/2019,"CCOM3900 FS","CCOM3900","CCOM3920 FS","CCOM3920",257,260,257,261,60,60,60,60,93,,"CCGT D1_Integrated Programme Schedule;(OEM) Commissioning;COLD COMMISSIONING;Balance of Systems for First Fire;10LCL",1,1,0.0000001656,0.0008138352,0.0002034588,5,1.0,0.0001503957,0.0068493151,0.0030769231,0.00025,0.0020887728,0.0006435006,0.0112107623,1.0,0.0283369572
1.2.2.3.20-3,CCOM3920,"cold commissioning incl motor solo runs incl first pump operation",7112,"CCGTD1_IPS",TT_Task,"58591",-,-,-,100,TK_Complete,02/07/2020,18/11/2019,07/07/2020,23/11/2019,"CCOM3910 FS","CCOM3910","CCOM3980 FS","CCOM3980",257,261,257,262,60,61,60,61,93,,"CCGT D1_Integrated Programme Schedule;(OEM) Commissioning;COLD COMMISSIONING;Balance of Systems for First Fire;10LCL",1,1,0.0000002484,0.0006103764,0.0004069176,5,1.0,0.000209244,0.0068493151,0.0030769231,0.000375,0.0015665796,0.0012870013,0.0112107623,1.0,0.0524499399
1.2.2.3.20-4,CCOM3980,"cold commissioning incl motor solo runs incl first pump operation",7112,"CCGTD1_IPS",TT_Task,"58591",-,-,-,100,TK_Complete,02/07/2020,25/11/2019,07/07/2020,30/11/2019,"CCOM3920 FS","CCOM3920","CCOM4190 FS","CCOM4190",257,262,257,263,60,61,60,61,93,,"CCGT D1_Integrated Programme Schedule;(OEM) Commissioning;COLD COMMISSIONING;Balance of Systems for First Fire;10LCL",1,1,0.0000002484,0.0004069176,0.0006103764,5,1.0,0.0002593786,0.0068493151,0.0030769231,0.000375,0.0010443864,0.0019305019,0.0112107623,1.0,0.0729924654
1.2.2.3.20-5,CCOM4190,"System in service for flushing",7112,"CCGTD1_IPS",TT_Task,"58591",-,-,-,100,TK_Complete,02/07/2020,09/12/2019,07/07/2020,14/12/2019,"CCOM3980 FS","CCOM3980","CCOM4350 FS","CCOM4350",257,264,257,265,60,61,60,61,94,,"CCGT D1_Integrated Programme Schedule;(OEM) Commissioning;COLD COMMISSIONING;Balance of Systems for First Fire;10LCL",1,1,0.0000001656,0.0002034588,0.0008138352,5,1.0,0.0003021254,0.0068493151,0.0030769231,0.00025,0.0005221932,0.0025740026,0.0112107623,1.0,0.0905078876
1.2.2.3.20-6,CCOM4350,"System in service",7112,"CCGTD1_IPS",TT_Task,"58591",-,-,-,100,TK_Complete,02/07/2020,17/12/2019,07/07/2020,21/12/2019,"CCOM4190 FS","CCOM4190","","",257,265,257,266,60,61,60,62,94,,"CCGT D1_Integrated Programme Schedule;(OEM) Commissioning;COLD COMMISSIONING;Balance of Systems for First Fire;10LCL",1,0,0.0,0.0,0.001017294,5,1.0,0.000338598,0.0068493151,0.0,0.0,0.0,0.0032175032,0.0112107623,1.0,0.1054524737
1.2.2.3.21,58590,"10LCB",7112,"CCGTD1_IPS",WBS,"58578",,,,100,Complete,02/07/2020,11/11/2019,07/07/2020,14/12/2019,,,,,257,260,257,265,60,60,60,61,,,"CCGT D1_Integrated Programme Schedule;(OEM) Commissioning;COLD COMMISSIONING;Balance of Systems for First Fire"
1.2.2.3.21-1,CCOM3610,"min flow run (pending TOP)",7112,"CCGTD1_IPS",TT_Task,"58590",-,-,-,100,TK_Complete,02/07/2020,15/11/2019,07/07/2020,16/11/2019,"CCOM3880 FS","CCOM3880","CCOM3890 FS","CCOM3890",257,261,257,261,60,60,60,60,93,,"CCGT D1_Integrated Programme Schedule;(OEM) Commissioning;COLD COMMISSIONING;Balance of Systems for First Fire;10LCB",1,1,0.000000207,0.001017294,0.0002034588,5,1.0,0.0001503957,0.0068493151,0.0030769231,0.0003125,0.0026109661,0.0006435006,0.0112107623,1.0,0.0283369572
1.2.2.3.21-2,CCOM3870,"min flow run (pending TOP)",7112,"CCGTD1_IPS",TT_Task,"58590",-,-,-,100,TK_Complete,02/07/2020,22/11/2019,07/07/2020,23/11/2019,"CCOM3890 FS","CCOM3890","CCOM3960 FS","CCOM3960",257,262,257,262,60,61,60,61,93,,"CCGT D1_Integrated Programme Schedule;(OEM) Commissioning;COLD COMMISSIONING;Balance of Systems for First Fire;10LCB",1,1,0.0000003726,0.0006103764,0.0006103764,5,1.0,0.0002593786,0.0068493151,0.0030769231,0.0005625,0.0015665796,0.0019305019,0.0112107623,1.0,0.0729924654
1.2.2.3.21-3,CCOM3880,"preparation for min flow run, cold comissioning (pending TOP)",7112,"CCGTD1_IPS",TT_Task,"58590",-,-,-,100,TK_Complete,02/07/2020,11/11/2019,07/07/2020,14/11/2019,"","","CCOM3610 FS","CCOM3610",257,260,257,260,60,60,60,60,93,,"CCGT D1_Integrated Programme Schedule;(OEM) Commissioning;COLD COMMISSIONING;Balance of Systems for First Fire;10LCB",0,1,0.0,0.0012207528,0.0,5,1.0,0.0000812387,0.0,0.0030769231,0.0,0.0031331593,0.0,0.0112107623,1.0,0.0
1.2.2.3.21-4,CCOM3890,"preparation for min flow run, cold comissioning (pending TOP)",7112,"CCGTD1_IPS",TT_Task,"58590",-,-,-,100,TK_Complete,02/07/2020,18/11/2019,07/07/2020,21/11/2019,"CCOM3610 FS","CCOM3610","CCOM3870 FS","CCOM3870",257,261,257,261,60,61,60,61,93,,"CCGT D1_Integrated Programme Schedule;(OEM) Commissioning;COLD COMMISSIONING;Balance of Systems for First Fire;10LCB",1,1,0.0000003312,0.0008138352,0.0004069176,5,1.0,0.000209244,0.0068493151,0.0030769231,0.0005,0.0020887728,0.0012870013,0.0112107623,1.0,0.0524499399
1.2.2.3.21-5,CCOM3960,"preparation for min flow run, cold comissioning (pending TOP)",7112,"CCGTD1_IPS",TT_Task,"58590",-,-,-,100,TK_Complete,02/07/2020,25/11/2019,07/07/2020,28/11/2019,"CCOM3870 FS","CCOM3870","CCOM3970 FS","CCOM3970",257,262,257,262,60,61,60,61,93,,"CCGT D1_Integrated Programme Schedule;(OEM) Commissioning;COLD COMMISSIONING;Balance of Systems for First Fire;10LCB",1,1,0.0000003312,0.0004069176,0.0008138352,5,1.0,0.0003021254,0.0068493151,0.0030769231,0.0005,0.0010443864,0.0025740026,0.0112107623,1.0,0.0905078876
1.2.2.3.21-6,CCOM3970,"min flow run (pending TOP)",7112,"CCGTD1_IPS",TT_Task,"58590",-,-,-,100,TK_Complete,02/07/2020,28/11/2019,07/07/2020,30/11/2019,"CCOM3960 FS","CCOM3960","CCOM4180 FS","CCOM4180",257,262,257,263,60,61,60,61,93,,"CCGT D1_Integrated Programme Schedule;(OEM) Commissioning;COLD COMMISSIONING;Balance of Systems for First Fire;10LCB",1,1,0.000000207,0.0002034588,0.001017294,5,1.0,0.000338598,0.0068493151,0.0030769231,0.0003125,0.0005221932,0.0032175032,0.0112107623,1.0,0.1054524737
1.2.2.3.21-7,CCOM4180,"Pump operation for high velocity flushing",7112,"CCGTD1_IPS",TT_Task,"58590",-,-,-,100,TK_Complete,02/07/2020,09/12/2019,07/07/2020,14/12/2019,"CCOM3970 FS","CCOM3970","","",257,264,257,265,60,61,60,61,94,,"CCGT D1_Integrated Programme Schedule;(OEM) Commissioning;COLD COMMISSIONING;Balance of Systems for First Fire;10LCB",1,0,0.0,0.0,0.0012207528,5,1.0,0.0003696143,0.0068493151,0.0,0.0,0.0,0.0038610039,0.0112107623,1.0,0.1181613545
1.2.2.3.22,58589,"10LAC",7112,"CCGTD1_IPS",WBS,"58578",,,,100,Complete,02/07/2020,12/11/2019,07/07/2020,18/01/2020,,,,,257,260,257,270,60,60,60,63,,,"CCGT D1_Integrated Programme Schedule;(OEM) Commissioning;COLD COMMISSIONING;Balance of Systems for First Fire"
1.2.2.3.22-1,CCOM3600,"cold commissioning, preparation for oil flushing (pending TOP)",7112,"CCGTD1_IPS",TT_Task,"58589",-,-,-,100,TK_Complete,02/07/2020,12/11/2019,07/07/2020,23/11/2019,"","","CCOM3950 FS","CCOM3950",257,260,257,262,60,60,60,61,93,,"CCGT D1_Integrated Programme Schedule;(OEM) Commissioning;COLD COMMISSIONING;Balance of Systems for First Fire;10LAC",0,1,0.0,0.0004069176,0.0,5,0.2,0.0000812387,0.0,0.0030769231,0.0,0.0010443864,0.0,0.0112107623,0.2,0.0
1.2.2.3.22-2,CCOM3950,"cold commissioning, oil flushing, motor rotation checks, motor solo run",7112,"CCGTD1_IPS",TT_Task,"58589",-,-,-,100,TK_Complete,02/07/2020,25/11/2019,07/07/2020,30/11/2019,"CCOM3600 FS","CCOM3600","CCOM4950 FS","CCOM4950",257,262,257,263,60,61,60,61,93,,"CCGT D1_Integrated Programme Schedule;(OEM) Commissioning;COLD COMMISSIONING;Balance of Systems for First Fire;10LAC",1,1,0.0000000414,0.0002034588,0.0002034588,5,1.0,0.0001503957,0.0068493151,0.0030769231,0.0000625,0.0005221932,0.0006435006,0.0112107623,1.0,0.0283369572
1.2.2.3.22-3,CCOM4950,"First FWP operation",7112,"CCGTD1_IPS",TT_Task,"58589",-,-,-,100,TK_Complete,02/07/2020,17/01/2020,07/07/2020,18/01/2020,"CCOM3950 FS","CCOM3950","","",257,270,257,270,60,63,60,63,95,,"CCGT D1_Integrated Programme Schedule;(OEM) Commissioning;COLD COMMISSIONING;Balance of Systems for First Fire;10LAC",1,0,0.0,0.0,0.0004069176,5,1.0,0.000209244,0.0068493151,0.0,0.0,0.0,0.0012870013,0.0112107623,1.0,0.0524499399
1.2.2.3.23,58588,"10GM",7112,"CCGTD1_IPS",WBS,"58578",,,,100,Complete,02/07/2020,14/11/2019,07/07/2020,10/12/2019,,,,,257,260,257,264,60,60,60,61,,,"CCGT D1_Integrated Programme Schedule;(OEM) Commissioning;COLD COMMISSIONING;Balance of Systems for First Fire"
1.2.2.3.23-1,CCOM3590,"Commissioning of GM-01 system (pending TOP)",7112,"CCGTD1_IPS",TT_Task,"58588",-,-,-,100,TK_Complete,02/07/2020,14/11/2019,07/07/2020,16/11/2019,"","","CCOM3860 FS","CCOM3860",257,260,257,261,60,60,60,60,93,,"CCGT D1_Integrated Programme Schedule;(OEM) Commissioning;COLD COMMISSIONING;Balance of Systems for First Fire;10GM",0,1,0.0,0.0004069176,0.0,5,1.0,0.0000812387,0.0,0.0030769231,0.0,0.0010443864,0.0,0.0112107623,1.0,0.0
1.2.2.3.23-2,CCOM3860,"Commissioning of GM-01 system (pending TOP)",7112,"CCGTD1_IPS",TT_Task,"58588",-,-,-,100,TK_Complete,02/07/2020,19/11/2019,07/07/2020,23/11/2019,"CCOM3590 FS","CCOM3590","CCOM4150 FS","CCOM4150",257,261,257,262,60,61,60,61,93,,"CCGT D1_Integrated Programme Schedule;(OEM) Commissioning;COLD COMMISSIONING;Balance of Systems for First Fire;10GM",1,1,0.0000000414,0.0002034588,0.0002034588,5,1.0,0.0001503957,0.0068493151,0.0030769231,0.0000625,0.0005221932,0.0006435006,0.0112107623,1.0,0.0283369572
1.2.2.3.23-3,CCOM4150,"Commissioning of GM-01 system",7112,"CCGTD1_IPS",TT_Task,"58588",-,-,-,100,TK_Complete,02/07/2020,09/12/2019,07/07/2020,10/12/2019,"CCOM3860 FS","CCOM3860","","",257,264,257,264,60,61,60,61,94,,"CCGT D1_Integrated Programme Schedule;(OEM) Commissioning;COLD COMMISSIONING;Balance of Systems for First Fire;10GM",1,0,0.0,0.0,0.0004069176,5,1.0,0.000209244,0.0068493151,0.0,0.0,0.0,0.0012870013,0.0112107623,1.0,0.0524499399
1.2.2.3.24,58587,"10XKA",7112,"CCGTD1_IPS",WBS,"58578",,,,100,Complete,02/07/2020,19/11/2019,07/07/2020,15/01/2020,,,,,257,261,257,269,60,61,60,62,,,"CCGT D1_Integrated Programme Schedule;(OEM) Commissioning;COLD COMMISSIONING;Balance of Systems for First Fire"
1.2.2.3.24-1,CCOM3800,"Initial electrical cold commissioning",7112,"CCGTD1_IPS",TT_Task,"58587",-,-,-,100,TK_Complete,02/07/2020,19/11/2019,07/07/2020,30/11/2019,"","","CCOM3810 FS","CCOM3810",257,261,257,263,60,61,60,61,93,,"CCGT D1_Integrated Programme Schedule;(OEM) Commissioning;COLD COMMISSIONING;Balance of Systems for First Fire;10XKA",0,1,0.0,0.0012207528,0.0,5,0.2,0.0000812387,0.0,0.0030769231,0.0,0.0031331593,0.0,0.0112107623,0.2,0.0
1.2.2.3.24-2,CCOM3810,"Synchronization tests",7112,"CCGTD1_IPS",TT_Task,"58587",-,-,-,100,TK_Complete,02/07/2020,09/12/2019,07/07/2020,12/12/2019,"CCOM3800 FS","CCOM3800","CCOM3820 FS","CCOM3820",257,264,257,264,60,61,60,61,93,,"CCGT D1_Integrated Programme Schedule;(OEM) Commissioning;COLD COMMISSIONING;Balance of Systems for First Fire;10XKA",1,1,0.000000207,0.001017294,0.0002034588,5,1.0,0.0001503957,0.0068493151,0.0030769231,0.0003125,0.0026109661,0.0006435006,0.0112107623,1.0,0.0283369572
1.2.2.3.24-3,CCOM3820,"Synchronization tests",7112,"CCGTD1_IPS",TT_Task,"58587",-,-,-,100,TK_Complete,02/07/2020,16/12/2019,07/07/2020,19/12/2019,"CCOM3810 FS","CCOM3810","CCOM3830 FS","CCOM3830",257,265,257,265,60,61,60,62,93,,"CCGT D1_Integrated Programme Schedule;(OEM) Commissioning;COLD COMMISSIONING;Balance of Systems for First Fire;10XKA",1,1,0.0000003312,0.0008138352,0.0004069176,5,1.0,0.000209244,0.0068493151,0.0030769231,0.0005,0.0020887728,0.0012870013,0.0112107623,1.0,0.0524499399
1.2.2.3.24-4,CCOM3830,"UVTS internal testing/logic checks",7112,"CCGTD1_IPS",TT_Task,"58587",-,-,-,100,TK_Complete,02/07/2020,06/01/2020,07/07/2020,14/01/2020,"CCOM3820 FS","CCOM3820","CCOM3840 FS","CCOM3840",257,268,257,269,60,62,60,62,93,,"CCGT D1_Integrated Programme Schedule;(OEM) Commissioning;COLD COMMISSIONING;Balance of Systems for First Fire;10XKA",1,1,0.0000003726,0.0006103764,0.0006103764,5,1.0,0.0002593786,0.0068493151,0.0030769231,0.0005625,0.0015665796,0.0019305019,0.0112107623,1.0,0.0729924654
1.2.2.3.24-5,CCOM3840,"Initial ATS internal testing",7112,"CCGTD1_IPS",TT_Task,"58587",-,-,-,100,TK_Complete,02/07/2020,11/01/2020,07/07/2020,11/01/2020,"CCOM3830 FS","CCOM3830","CCOM3850 FS","CCOM3850",257,269,257,269,60,62,60,62,93,,"CCGT D1_Integrated Programme Schedule;(OEM) Commissioning;COLD COMMISSIONING;Balance of Systems for First Fire;10XKA",1,1,0.0000003312,0.0004069176,0.0008138352,5,1.0,0.0003021254,0.0068493151,0.0030769231,0.0005,0.0010443864,0.0025740026,0.0112107623,1.0,0.0905078876
1.2.2.3.24-6,CCOM3850,"ATS official testing",7112,"CCGTD1_IPS",TT_Task,"58587",-,-,-,100,TK_Complete,02/07/2020,14/01/2020,07/07/2020,15/01/2020,"CCOM3840 FS","CCOM3840","CCOM5150 FS","CCOM5150",257,269,257,269,60,62,60,62,93,,"CCGT D1_Integrated Programme Schedule;(OEM) Commissioning;COLD COMMISSIONING;Balance of Systems for First Fire;10XKA",1,1,0.000000207,0.0002034588,0.001017294,5,1.0,0.000338598,0.0068493151,0.0030769231,0.0003125,0.0005221932,0.0032175032,0.0112107623,1.0,0.1054524737
1.2.2.3.24-7,CCOM5150,"ATS Test",7112,"CCGTD1_IPS",TT_Task,"58587",-,-,-,100,TK_Complete,02/07/2020,14/01/2020,07/07/2020,14/01/2020,"CCOM3850 FS","CCOM3850","","",257,269,257,269,60,62,60,62,96,,"CCGT D1_Integrated Programme Schedule;(OEM) Commissioning;COLD COMMISSIONING;Balance of Systems for First Fire;10XKA",1,0,0.0,0.0,0.0012207528,5,1.0,0.0003696143,0.0068493151,0.0,0.0,0.0,0.0038610039,0.0112107623,1.0,0.1181613545
1.2.2.3.25,58586,"10BAA",7112,"CCGTD1_IPS",WBS,"58578",,,,100,Complete,02/07/2020,19/11/2019,07/07/2020,27/11/2019,,,,,257,261,257,262,60,61,60,61,,,"CCGT D1_Integrated Programme Schedule;(OEM) Commissioning;COLD COMMISSIONING;Balance of Systems for First Fire"
1.2.2.3.25-1,CCOM3580,"pressurisation of bus duct (pressure test for constrcution)",7112,"CCGTD1_IPS",TT_Task,"58586",-,-,-,100,TK_Complete,02/07/2020,19/11/2019,07/07/2020,21/11/2019,"","","CCOM3940 FS","CCOM3940",257,261,257,261,60,61,60,61,93,,"CCGT D1_Integrated Programme Schedule;(OEM) Commissioning;COLD COMMISSIONING;Balance of Systems for First Fire;10BAA",0,1,0.0,0.0002034588,0.0,5,1.0,0.0000812387,0.0,0.0030769231,0.0,0.0005221932,0.0,0.0112107623,1.0,0.0
1.2.2.3.25-2,CCOM3940,"pressurisation of bus duct (pressure test for constrcution)",7112,"CCGTD1_IPS",TT_Task,"58586",-,-,-,100,TK_Complete,02/07/2020,25/11/2019,07/07/2020,27/11/2019,"CCOM3580 FS","CCOM3580","","",257,262,257,262,60,61,60,61,93,,"CCGT D1_Integrated Programme Schedule;(OEM) Commissioning;COLD COMMISSIONING;Balance of Systems for First Fire;10BAA",1,0,0.0,0.0,0.0002034588,5,1.0,0.0001503957,0.0068493151,0.0,0.0,0.0,0.0006435006,0.0112107623,1.0,0.0283369572
1.2.2.3.26,58585,"10CPC91/92",7112,"CCGTD1_IPS",WBS,"58578",,,,100,Complete,02/07/2020,20/11/2019,07/07/2020,22/11/2019,,,,,257,261,257,262,60,61,60,61,,,"CCGT D1_Integrated Programme Schedule;(OEM) Commissioning;COLD COMMISSIONING;Balance of Systems for First Fire"
1.2.2.3.26-1,CCOM3575,"End- to End test: D1 - LDC",7112,"CCGTD1_IPS",TT_Task,"58585",-,-,-,100,TK_Complete,02/07/2020,20/11/2019,07/07/2020,22/11/2019,"","","","",257,261,257,262,60,61,60,61,93,,"CCGT D1_Integrated Programme Schedule;(OEM) Commissioning;COLD COMMISSIONING;Balance of Systems for First Fire;10CPC91/92",0,0,0.0,0.0,0.0,5,1.0,0.0000812387,0.0,0.0,0.0,0.0,0.0,0.0112107623,1.0,0.0
1.2.2.3.27,58584,"10ACA",7112,"CCGTD1_IPS",WBS,"58578",,,,100,Complete,02/07/2020,18/11/2019,07/07/2020,27/11/2019,,,,,257,261,257,262,60,61,60,61,,,"CCGT D1_Integrated Programme Schedule;(OEM) Commissioning;COLD COMMISSIONING;Balance of Systems for First Fire"
1.2.2.3.27-1,CCOM3770,"400V Injection from GIS side (pending release from CLP)",7112,"CCGTD1_IPS",TT_Task,"58584",-,-,-,100,TK_Complete,02/07/2020,18/11/2019,07/07/2020,19/11/2019,"","","CCOM3780 FS","CCOM3780",257,261,257,261,60,61,60,61,93,,"CCGT D1_Integrated Programme Schedule;(OEM) Commissioning;COLD COMMISSIONING;Balance of Systems for First Fire;10ACA",0,1,0.0,0.0004069176,0.0,5,1.0,0.0000812387,0.0,0.0030769231,0.0,0.0010443864,0.0,0.0112107623,1.0,0.0
1.2.2.3.27-2,CCOM3780,"Exchange of gasket on GIL & refilling of SF6",7112,"CCGTD1_IPS",TT_Task,"58584",-,-,-,100,TK_Complete,02/07/2020,19/11/2019,07/07/2020,20/11/2019,"CCOM3770 FS","CCOM3770","CCOM3790 FS","CCOM3790",257,261,257,261,60,61,60,61,93,,"CCGT D1_Integrated Programme Schedule;(OEM) Commissioning;COLD COMMISSIONING;Balance of Systems for First Fire;10ACA",1,1,0.0000000414,0.0002034588,0.0002034588,5,1.0,0.0001503957,0.0068493151,0.0030769231,0.0000625,0.0005221932,0.0006435006,0.0112107623,1.0,0.0283369572
1.2.2.3.27-3,CCOM3790,"Exchange of gasket on GIL & refilling of SF6",7112,"CCGTD1_IPS",TT_Task,"58584",-,-,-,100,TK_Complete,02/07/2020,26/11/2019,07/07/2020,27/11/2019,"CCOM3780 FS","CCOM3780","","",257,262,257,262,60,61,60,61,93,,"CCGT D1_Integrated Programme Schedule;(OEM) Commissioning;COLD COMMISSIONING;Balance of Systems for First Fire;10ACA",1,0,0.0,0.0,0.0004069176,5,1.0,0.000209244,0.0068493151,0.0,0.0,0.0,0.0012870013,0.0112107623,1.0,0.0524499399
1.2.2.3.28,58582,"10MBP GT Fuel Gas System",7112,"CCGTD1_IPS",WBS,"58578",,,,100,Complete,31/08/2019,28/10/2019,07/07/2020,30/11/2019,,,,,213,258,257,263,49,60,60,61,,,"CCGT D1_Integrated Programme Schedule;(OEM) Commissioning;COLD COMMISSIONING;Balance of Systems for First Fire"
1.2.2.3.28-1,CCOM3090,"Handover of TOP 10MBP",7112,"CCGTD1_IPS",TT_FinMile,"58582",-,-,-,100,TK_Complete,31/08/2019,21/11/2019,31/08/2019,21/11/2019,"TOP1280 FS,CCOM2810 FS,CCOM3370 FS","TOP1280,CCOM2810,CCOM3370","","",213,261,213,261,49,61,49,61,73,,"CCGT D1_Integrated Programme Schedule;(OEM) Commissioning;COLD COMMISSIONING;Balance of Systems for First Fire;10MBP GT Fuel Gas System",3,0,0.0,0.0,0.013224822,0,1.0,0.0000812387,0.0205479452,0.0,0.0,0.0,0.0418275418,0.0,1.0,0.0
1.2.2.3.28-2,CCOM2540,"Borescope inspection of piping system",7112,"CCGTD1_IPS",TT_Task,"58582",-,-,-,100,TK_Complete,31/08/2019,28/10/2019,05/09/2019,29/10/2019,"","","CCOM2620 FS","CCOM2620",213,258,214,258,49,60,49,60,73,,"CCGT D1_Integrated Programme Schedule;(OEM) Commissioning;COLD COMMISSIONING;Balance of Systems for First Fire;10MBP GT Fuel Gas System",0,1,0.0,0.0008138352,0.0,5,1.0,0.0000812387,0.0,0.0030769231,0.0,0.0020887728,0.0,0.0112107623,1.0,0.0
1.2.2.3.28-3,CCOM2620,"Blow out of gas ring lines",7112,"CCGTD1_IPS",TT_Task,"58582",-,-,-,100,TK_Complete,31/08/2019,30/10/2019,05/09/2019,04/11/2019,"CCOM2540 FS","CCOM2540","CCOM2810 FS","CCOM2810",213,258,214,259,49,60,49,60,73,,"CCGT D1_Integrated Programme Schedule;(OEM) Commissioning;COLD COMMISSIONING;Balance of Systems for First Fire;10MBP GT Fuel Gas System",1,1,0.0000001242,0.0006103764,0.0002034588,5,1.0,0.0001503957,0.0068493151,0.0030769231,0.0001875,0.0015665796,0.0006435006,0.0112107623,1.0,0.0283369572
1.2.2.3.28-4,CCOM2810,"Valve commissioning",7112,"CCGTD1_IPS",TT_Task,"58582",-,-,-,100,TK_Complete,31/08/2019,06/11/2019,05/09/2019,11/11/2019,"CCOM2620 FS","CCOM2620","CCOM3090 FS,CCOM3370 FS","CCOM3090,CCOM3370",213,259,214,260,49,60,49,60,74,,"CCGT D1_Integrated Programme Schedule;(OEM) Commissioning;COLD COMMISSIONING;Balance of Systems for First Fire;10MBP GT Fuel Gas System",1,2,0.0000001656,0.0004069176,0.0004069176,5,1.0,0.000209244,0.0068493151,0.0061538462,0.00025,0.0010443864,0.0012870013,0.0112107623,1.0,0.0524499399
1.2.2.3.28-5,CCOM3370,"Valve commissioning",7112,"CCGTD1_IPS",TT_Task,"58582",-,-,-,100,TK_Complete,02/07/2020,13/11/2019,07/07/2020,30/11/2019,"CCOM2810 FS","CCOM2810","CCOM3090 FS","CCOM3090",257,260,257,263,60,60,60,61,92,,"CCGT D1_Integrated Programme Schedule;(OEM) Commissioning;COLD COMMISSIONING;Balance of Systems for First Fire;10MBP GT Fuel Gas System",1,1,0.0,0.0002034588,0.0006103764,5,0.0,0.0002593786,0.0068493151,0.0030769231,0.0,0.0005221932,0.0019305019,0.0112107623,0.0,0.0729924654
1.2.2.3.29,58581,"10MBU-01 Reserve Feedwater Pumps and Distribution System",7112,"CCGTD1_IPS",WBS,"58578",,,,100,Complete,31/08/2019,10/10/2019,05/09/2019,18/10/2019,,,,,213,255,214,257,49,59,49,59,,,"CCGT D1_Integrated Programme Schedule;(OEM) Commissioning;COLD COMMISSIONING;Balance of Systems for First Fire"
1.2.2.3.29-1,CCOM2120,"Handover of TOP 10MBU-01",7112,"CCGTD1_IPS",TT_FinMile,"58581",-,-,-,100,TK_Complete,31/08/2019,12/10/2019,31/08/2019,12/10/2019,"TOP2560 FS,CCOM2040 FS","TOP2560,CCOM2040","CCOM2230 FS","CCOM2230",213,256,213,256,49,59,49,59,72,,"CCGT D1_Integrated Programme Schedule;(OEM) Commissioning;COLD COMMISSIONING;Balance of Systems for First Fire;10MBU-01 Reserve Feedwater Pumps and Distribution System",2,1,0.0000028155,0.0004069176,0.0069175992,0,1.0,0.0000812387,0.0136986301,0.0030769231,0.00425,0.0010443864,0.0218790219,0.0,1.0,0.0
1.2.2.3.29-2,CCOM2040,"Preparation for system flushing, rotation check of water transfer pumps",7112,"CCGTD1_IPS",TT_Task,"58581",-,-,-,100,TK_Complete,31/08/2019,10/10/2019,05/09/2019,14/10/2019,"","","CCOM2120 FS","CCOM2120",213,255,214,256,49,59,49,59,72,,"CCGT D1_Integrated Programme Schedule;(OEM) Commissioning;COLD COMMISSIONING;Balance of Systems for First Fire;10MBU-01 Reserve Feedwater Pumps and Distribution System",0,1,0.0,0.0006103764,0.0,5,1.0,0.0000812387,0.0,0.0030769231,0.0,0.0015665796,0.0,0.0112107623,1.0,0.0
1.2.2.3.29-3,CCOM2230,"Finalisation of piping by Wai Leun to complete last flushing step",7112,"CCGTD1_IPS",TT_Task,"58581",-,-,-,100,TK_Complete,31/08/2019,16/10/2019,05/09/2019,16/10/2019,"CCOM2120 FS","CCOM2120","CCOM2290 FS","CCOM2290",213,256,214,256,49,59,49,59,72,,"CCGT D1_Integrated Programme Schedule;(OEM) Commissioning;COLD COMMISSIONING;Balance of Systems for First Fire;10MBU-01 Reserve Feedwater Pumps and Distribution System",1,1,0.0000014491,0.0002034588,0.007121058,5,1.0,0.0001503957,0.0068493151,0.0030769231,0.0021875,0.0005221932,0.0225225225,0.0112107623,1.0,0.0283369572
1.2.2.3.29-4,CCOM2290,"System flushing (discharge piping)",7112,"CCGTD1_IPS",TT_Task,"58581",-,-,-,100,TK_Complete,31/08/2019,17/10/2019,05/09/2019,18/10/2019,"CCOM2230 FS","CCOM2230","","",213,256,214,257,49,59,49,59,73,,"CCGT D1_Integrated Programme Schedule;(OEM) Commissioning;COLD COMMISSIONING;Balance of Systems for First Fire;10MBU-01 Reserve Feedwater Pumps and Distribution System",1,0,0.0,0.0,0.0073245168,5,1.0,0.000209244,0.0068493151,0.0,0.0,0.0,0.0231660232,0.0112107623,1.0,0.0524499399
1.2.2.3.30,58580,"10BF-02 LV Switchgear BFB/BFC",7112,"CCGTD1_IPS",WBS,"58578",,,,100,Complete,31/08/2019,04/09/2019,21/12/2019,21/12/2019,,,,,213,250,229,266,49,58,53,62,,,"CCGT D1_Integrated Programme Schedule;(OEM) Commissioning;COLD COMMISSIONING;Balance of Systems for First Fire"
1.2.2.3.30-1,CCOM1410,"Handover of TOP 10BF-02",7112,"CCGTD1_IPS",TT_FinMile,"58580",-,-,-,100,TK_Complete,31/08/2019,04/09/2019,31/08/2019,04/09/2019,"TOP2490 FS","TOP2490","CCOM1570 FS","CCOM1570",213,250,213,250,49,58,49,58,71,,"CCGT D1_Integrated Programme Schedule;(OEM) Commissioning;COLD COMMISSIONING;Balance of Systems for First Fire;10BF-02 LV Switchgear BFB/BFC",1,1,0.0000076597,0.001017294,0.0075279756,0,1.0,0.0000812387,0.0068493151,0.0030769231,0.0115625,0.0026109661,0.0238095238,0.0,1.0,0.0
1.2.2.3.30-2,CCOM1570,"Initial commissioning of LV Busbars",7112,"CCGTD1_IPS",TT_Task,"58580",-,-,-,100,TK_Complete,31/08/2019,12/09/2019,05/09/2019,19/09/2019,"CCOM1410 FS","CCOM1410","CCOM1720 FS","CCOM1720",213,251,214,252,49,58,49,59,71,,"CCGT D1_Integrated Programme Schedule;(OEM) Commissioning;COLD COMMISSIONING;Balance of Systems for First Fire;10BF-02 LV Switchgear BFB/BFC",1,1,0.0000062934,0.0008138352,0.0077314344,5,0.8,0.0001503957,0.0068493151,0.0030769231,0.0095,0.0020887728,0.0244530245,0.0112107623,0.8,0.0283369572
1.2.2.3.30-3,CCOM1720,"Commissioning of LV Busbars",7112,"CCGTD1_IPS",TT_Task,"58580",-,-,-,100,TK_Complete,31/08/2019,23/09/2019,05/09/2019,27/09/2019,"CCOM1570 FS","CCOM1570","CCOM1970 FS","CCOM1970",213,253,214,254,49,59,49,59,71,,"CCGT D1_Integrated Programme Schedule;(OEM) Commissioning;COLD COMMISSIONING;Balance of Systems for First Fire;10BF-02 LV Switchgear BFB/BFC",1,1,0.0000048443,0.0006103764,0.0079348932,5,1.0,0.000209244,0.0068493151,0.0030769231,0.0073125,0.0015665796,0.0250965251,0.0112107623,1.0,0.0524499399
1.2.2.3.30-4,CCOM1970,"Feeder commissioning - BFTGT002",7112,"CCGTD1_IPS",TT_Task,"58580",-,-,-,100,TK_Complete,31/08/2019,09/10/2019,05/09/2019,14/10/2019,"CCOM1720 FS","CCOM1720","CCOM2140 FS","CCOM2140",213,255,214,256,49,59,49,59,72,,"CCGT D1_Integrated Programme Schedule;(OEM) Commissioning;COLD COMMISSIONING;Balance of Systems for First Fire;10BF-02 LV Switchgear BFB/BFC",1,1,0.0000033123,0.0004069176,0.008138352,5,1.0,0.0002593786,0.0068493151,0.0030769231,0.005,0.0010443864,0.0257400257,0.0112107623,1.0,0.0729924654
1.2.2.3.30-5,CCOM2140,"Testing of automatic transfer system (ATS)",7112,"CCGTD1_IPS",TT_Task,"58580",-,-,-,100,TK_Complete,31/08/2019,14/10/2019,05/09/2019,17/10/2019,"CCOM1970 FS","CCOM1970","CCOM3260 FS","CCOM3260",213,256,214,256,49,59,49,59,72,,"CCGT D1_Integrated Programme Schedule;(OEM) Commissioning;COLD COMMISSIONING;Balance of Systems for First Fire;10BF-02 LV Switchgear BFB/BFC",1,1,0.0000016976,0.0002034588,0.0083418108,5,1.0,0.0003021254,0.0068493151,0.0030769231,0.0025625,0.0005221932,0.0263835264,0.0112107623,1.0,0.0905078876
1.2.2.3.30-6,CCOM3260,"Energisation of first components upon requirements",7112,"CCGTD1_IPS",TT_Task,"58580",-,-,-,100,TK_Complete,18/11/2019,18/11/2019,21/12/2019,21/12/2019,"CCOM2140 FS","CCOM2140","","",224,261,229,266,52,61,53,62,82,,"CCGT D1_Integrated Programme Schedule;(OEM) Commissioning;COLD COMMISSIONING;Balance of Systems for First Fire;10BF-02 LV Switchgear BFB/BFC",1,0,0.0,0.0,0.0085452696,33,1.0,0.000338598,0.0068493151,0.0,0.0,0.0,0.027027027,0.0739910314,1.0,0.1054524737
1.2.2.3.31,58579,"10CR Control Room Equipment",7112,"CCGTD1_IPS",WBS,"58578",,,,100,Complete,04/07/2019,04/07/2019,24/08/2019,23/08/2019,,,,,205,241,212,249,47,56,49,58,,,"CCGT D1_Integrated Programme Schedule;(OEM) Commissioning;COLD COMMISSIONING;Balance of Systems for First Fire"
1.2.2.3.31-1,CCOM1170,"Server Commissioning CCR (CRY-01)",7112,"CCGTD1_IPS",TT_Task,"58579",-,-,-,100,TK_Complete,20/08/2019,20/08/2019,24/08/2019,23/08/2019,"CCOM1040 FS","CCOM1040","CCOM1180 FS","CCOM1180",211,248,212,249,49,58,49,58,70,,"CCGT D1_Integrated Programme Schedule;(OEM) Commissioning;COLD COMMISSIONING;Balance of Systems for First Fire;10CR Control Room Equipment",1,1,0.0000042232,0.0004069176,0.0103763988,4,1.0,0.0001503957,0.0068493151,0.0030769231,0.006375,0.0010443864,0.0328185328,0.0089686099,1.0,0.0283369572
1.2.2.3.31-2,CCOM1180,"Server Commissioning LCR UBA-0202 (CRY-02)",7112,"CCGTD1_IPS",TT_Task,"58579",-,-,-,100,TK_Complete,20/08/2019,20/08/2019,24/08/2019,23/08/2019,"CCOM1170 FS","CCOM1170","CCOM1220 FS","CCOM1220",211,248,212,249,49,58,49,58,70,,"CCGT D1_Integrated Programme Schedule;(OEM) Commissioning;COLD COMMISSIONING;Balance of Systems for First Fire;10CR Control Room Equipment",1,1,0.000002153,0.0002034588,0.0105798576,4,1.0,0.000209244,0.0068493151,0.0030769231,0.00325,0.0005221932,0.0334620335,0.0089686099,1.0,0.0524499399
1.2.2.3.31-3,CCOM1030,"Handover of TOP 10CR-01",7112,"CCGTD1_IPS",TT_FinMile,"58579",-,-,-,100,TK_Complete,15/07/2019,15/07/2019,15/07/2019,15/07/2019,"TOP2650 FS","TOP2650","","",206,243,206,243,48,56,48,56,66,,"CCGT D1_Integrated Programme Schedule;(OEM) Commissioning;COLD COMMISSIONING;Balance of Systems for First Fire;10CR Control Room Equipment",1,0,0.0,0.0,0.01017294,0,1.0,0.0000812387,0.0068493151,0.0,0.0,0.0,0.0321750322,0.0,1.0,0.0
1.2.2.3.31-4,CCOM1010,"Handover of TOP 10CR-02",7112,"CCGTD1_IPS",TT_FinMile,"58579",-,-,-,100,TK_Complete,04/07/2019,04/07/2019,04/07/2019,04/07/2019,"TOP2660 FS","TOP2660","","",205,241,205,241,47,56,47,56,65,,"CCGT D1_Integrated Programme Schedule;(OEM) Commissioning;COLD COMMISSIONING;Balance of Systems for First Fire;10CR Control Room Equipment",1,0,0.0,0.0,0.01017294,0,1.0,0.0000812387,0.0068493151,0.0,0.0,0.0,0.0321750322,0.0,1.0,0.0
1.2.2.3.31-5,CCOM1220,"Simulator Commissioning (CRQ)",7112,"CCGTD1_IPS",TT_Task,"58579",-,-,-,100,TK_Complete,20/08/2019,20/08/2019,24/08/2019,23/08/2019,"CCOM1180 FS","CCOM1180","","",211,248,212,249,49,58,49,58,70,,"CCGT D1_Integrated Programme Schedule;(OEM) Commissioning;COLD COMMISSIONING;Balance of Systems for First Fire;10CR Control Room Equipment",1,0,0.0,0.0,0.0107833164,4,1.0,0.0002593786,0.0068493151,0.0,0.0,0.0,0.0341055341,0.0089686099,1.0,0.0729924654
1.2.2.3.31-6,CCOM1040,"Handover of TOP-10CR-01",7112,"CCGTD1_IPS",TT_FinMile,"58579",-,-,-,100,TK_Complete,15/07/2019,15/07/2019,15/07/2019,15/07/2019,"TOP2650 FS","TOP2650","CCOM1170 FS","CCOM1170",206,243,206,243,48,56,48,56,66,,"CCGT D1_Integrated Programme Schedule;(OEM) Commissioning;COLD COMMISSIONING;Balance of Systems for First Fire;10CR Control Room Equipment",1,1,0.0000062106,0.0006103764,0.01017294,0,1.0,0.0000812387,0.0068493151,0.0030769231,0.009375,0.0015665796,0.0321750322,0.0,1.0,0.0
1.2.2.3.31-7,CCOM1020,"Handover of TOP-10CR-02",7112,"CCGTD1_IPS",TT_FinMile,"58579",-,-,-,100,TK_Complete,04/07/2019,04/07/2019,04/07/2019,04/07/2019,"TOP2660 FS","TOP2660","","",205,241,205,241,47,56,47,56,65,,"CCGT D1_Integrated Programme Schedule;(OEM) Commissioning;COLD COMMISSIONING;Balance of Systems for First Fire;10CR Control Room Equipment",1,0,0.0,0.0,0.01017294,0,1.0,0.0000812387,0.0068493151,0.0,0.0,0.0,0.0321750322,0.0,1.0,0.0
1.2.2.4,58576,"Fire Fighting Systems",7112,"CCGTD1_IPS",WBS,"58519",,,,100,Complete,31/08/2019,02/11/2019,05/09/2019,14/11/2019,,,,,213,259,214,260,49,60,49,60,,,"CCGT D1_Integrated Programme Schedule;(OEM) Commissioning;COLD COMMISSIONING"
1.2.2.4.1,58577,"10SAM30 HVAC System for GT Noise Enclosure MPB",7112,"CCGTD1_IPS",WBS,"58576",,,,100,Complete,31/08/2019,02/11/2019,05/09/2019,14/11/2019,,,,,213,259,214,260,49,60,49,60,,,"CCGT D1_Integrated Programme Schedule;(OEM) Commissioning;COLD COMMISSIONING;Fire Fighting Systems"
1.2.2.4.1-1,CCOM2680,"Handover of TOP 10SAM30",7112,"CCGTD1_IPS",TT_FinMile,"58577",-,-,-,100,TK_Complete,31/08/2019,02/11/2019,31/08/2019,02/11/2019,"TOP1380 FS","TOP1380","CCOM2900 FS","CCOM2900",213,259,213,259,49,60,49,60,74,,"CCGT D1_Integrated Programme Schedule;(OEM) Commissioning;COLD COMMISSIONING;Fire Fighting Systems;10SAM30 HVAC System for GT Noise Enclosure MPB",1,1,0.0000002484,0.0002034588,0.0012207528,0,1.0,0.0000812387,0.0068493151,0.0030769231,0.000375,0.0005221932,0.0038610039,0.0,1.0,0.0
1.2.2.4.1-2,CCOM2900,"Cold commissioning, rotation checks, commossioning of components",7112,"CCGTD1_IPS",TT_Task,"58577",-,-,-,100,TK_Complete,31/08/2019,11/11/2019,05/09/2019,14/11/2019,"CCOM2680 FS","CCOM2680","","",213,260,214,260,49,60,49,60,74,,"CCGT D1_Integrated Programme Schedule;(OEM) Commissioning;COLD COMMISSIONING;Fire Fighting Systems;10SAM30 HVAC System for GT Noise Enclosure MPB",1,0,0.0,0.0,0.0014242116,5,1.0,0.0001503957,0.0068493151,0.0,0.0,0.0,0.0045045045,0.0112107623,1.0,0.0283369572
1.2.2.5,58575,"Circulating / Cooling Water System",7112,"CCGTD1_IPS",WBS,"58519",,,,,NotStart,,,,,,,,,,,,,,,,,,,"CCGT D1_Integrated Programme Schedule;(OEM) Commissioning;COLD COMMISSIONING"
1.2.2.6,58553,"Electrical",7112,"CCGTD1_IPS",WBS,"58519",,,,100,Complete,19/07/2019,19/07/2019,07/06/2021,16/01/2020,,,,,207,244,305,269,48,56,71,62,,,"CCGT D1_Integrated Programme Schedule;(OEM) Commissioning;COLD COMMISSIONING"
1.2.2.6.1,58565,"400 kV Back Energization",7112,"CCGTD1_IPS",WBS,"58553",,,,100,Complete,29/07/2019,29/07/2019,07/06/2021,16/01/2020,,,,,208,245,305,269,48,57,71,62,,,"CCGT D1_Integrated Programme Schedule;(OEM) Commissioning;COLD COMMISSIONING;Electrical"
1.2.2.6.1.1,62092,"Back Energization",7112,"CCGTD1_IPS",WBS,"58565",,,,100,Complete,01/06/2021,01/12/2019,07/06/2021,01/12/2019,,,,,304,263,305,263,71,61,71,61,,,"CCGT D1_Integrated Programme Schedule;(OEM) Commissioning;COLD COMMISSIONING;Electrical;400 kV Back Energization"
1.2.2.6.1.1-1,A4270,"Back Engergization",7112,"CCGTD1_IPS",TT_Task,"62092",-,-,-,100,TK_Complete,01/06/2021,01/12/2019,07/06/2021,01/12/2019,"CCOM3075 FS,CCOM3220 FS","CCOM3075,CCOM3220","A4280 FF","A4280",304,263,305,263,71,61,71,61,98,,"CCGT D1_Integrated Programme Schedule;(OEM) Commissioning;COLD COMMISSIONING;Electrical;400 kV Back Energization;Back Energization",2,1,0.0000120485,0.0006103764,0.0197355036,6,1.0,0.0005273828,0.0136986301,0.0030769231,0.0181875,0.0015665796,0.0624195624,0.0134529148,1.0,0.1828066977
1.2.2.6.1.1-2,A4280,"Back Engergization Achieved",7112,"CCGTD1_IPS",TT_FinMile,"62092",-,-,-,100,TK_Complete,01/06/2021,01/12/2019,01/06/2021,01/12/2019,"A4270 FF","A4270","A4060 FF","A4060",304,263,304,263,71,61,71,61,98,,"CCGT D1_Integrated Programme Schedule;(OEM) Commissioning;COLD COMMISSIONING;Electrical;400 kV Back Energization;Back Energization",1,1,0.0000081152,0.0004069176,0.0199389624,0,1.0,0.0000812387,0.0068493151,0.0030769231,0.01225,0.0010443864,0.0630630631,0.0,1.0,0.0
1.2.2.6.1.2,58574,"10CKA Partial discharge & shaft voltage / current monitoring system",7112,"CCGTD1_IPS",WBS,"58565",,,,100,Complete,31/08/2019,20/10/2019,07/07/2020,18/11/2019,,,,,213,257,257,261,49,60,60,61,,,"CCGT D1_Integrated Programme Schedule;(OEM) Commissioning;COLD COMMISSIONING;Electrical;400 kV Back Energization"
1.2.2.6.1.2-1,CCOM2320,"Handover of TOP 10CKA",7112,"CCGTD1_IPS",TT_FinMile,"58574",-,-,-,100,TK_Complete,31/08/2019,20/10/2019,31/08/2019,20/10/2019,"TOP2570 FS","TOP2570","CCOM3280 FS","CCOM3280",213,257,213,257,49,60,49,60,74,,"CCGT D1_Integrated Programme Schedule;(OEM) Commissioning;COLD COMMISSIONING;Electrical;400 kV Back Energization;10CKA Partial discharge & shaft voltage / current monitoring system",1,1,0.0000044716,0.0002034588,0.0219735504,0,1.0,0.0000812387,0.0068493151,0.0030769231,0.00675,0.0005221932,0.0694980695,0.0,1.0,0.0
1.2.2.6.1.2-2,CCOM3280,"CLP Training on the job & commissioning of CKA-03",7112,"CCGTD1_IPS",TT_Task,"58574",-,-,-,100,TK_Complete,02/07/2020,18/11/2019,07/07/2020,18/11/2019,"CCOM2320 FS","CCOM2320","","",257,261,257,261,60,61,60,61,92,,"CCGT D1_Integrated Programme Schedule;(OEM) Commissioning;COLD COMMISSIONING;Electrical;400 kV Back Energization;10CKA Partial discharge & shaft voltage / current monitoring system",1,0,0.0,0.0,0.0221770092,5,1.0,0.0001503957,0.0068493151,0.0,0.0,0.0,0.0701415701,0.0112107623,1.0,0.0283369572
1.2.2.6.1.3,58573,"10MKC SEE / SFC Transformers",7112,"CCGTD1_IPS",WBS,"58565",,,,100,Complete,31/08/2019,25/10/2019,05/09/2019,14/11/2019,,,,,213,258,214,260,49,60,49,60,,,"CCGT D1_Integrated Programme Schedule;(OEM) Commissioning;COLD COMMISSIONING;Electrical;400 kV Back Energization"
1.2.2.6.1.3-1,CCOM2470,"Handover of TOP 10MKC",7112,"CCGTD1_IPS",TT_FinMile,"58573",-,-,-,100,TK_Complete,31/08/2019,25/10/2019,31/08/2019,25/10/2019,"TOP1680 FS","TOP1680","CCOM2600 FS","CCOM2600",213,258,213,258,49,60,49,60,73,,"CCGT D1_Integrated Programme Schedule;(OEM) Commissioning;COLD COMMISSIONING;Electrical;400 kV Back Energization;10MKC SEE / SFC Transformers",1,1,0.0000134149,0.0012207528,0.0109867752,0,1.0,0.0000812387,0.0068493151,0.0030769231,0.02025,0.0031331593,0.0347490347,0.0,1.0,0.0
1.2.2.6.1.3-2,CCOM2600,"Cold comm - energization of cabinet",7112,"CCGTD1_IPS",TT_Task,"58573",-,-,-,100,TK_Complete,31/08/2019,30/10/2019,05/09/2019,01/11/2019,"CCOM2470 FS","CCOM2470","CCOM2660 FS","CCOM2660",213,258,214,259,49,60,49,60,73,,"CCGT D1_Integrated Programme Schedule;(OEM) Commissioning;COLD COMMISSIONING;Electrical;400 kV Back Energization;10MKC SEE / SFC Transformers",1,1,0.0000113861,0.001017294,0.011190234,5,1.0,0.0001503957,0.0068493151,0.0030769231,0.0171875,0.0026109661,0.0353925354,0.0112107623,1.0,0.0283369572
1.2.2.6.1.3-3,CCOM2660,"Cold comm - isolation test, ratio test",7112,"CCGTD1_IPS",TT_Task,"58573",-,-,-,100,TK_Complete,31/08/2019,02/11/2019,05/09/2019,02/11/2019,"CCOM2600 FS","CCOM2600","CCOM2720 FS","CCOM2720",213,259,214,259,49,60,49,60,73,,"CCGT D1_Integrated Programme Schedule;(OEM) Commissioning;COLD COMMISSIONING;Electrical;400 kV Back Energization;10MKC SEE / SFC Transformers",1,1,0.0000092745,0.0008138352,0.0113936928,5,1.0,0.000209244,0.0068493151,0.0030769231,0.014,0.0020887728,0.036036036,0.0112107623,1.0,0.0524499399
1.2.2.6.1.3-4,CCOM2720,"Cold comm - current trafo test, voltage trafo test",7112,"CCGTD1_IPS",TT_Task,"58573",-,-,-,100,TK_Complete,31/08/2019,04/11/2019,05/09/2019,06/11/2019,"CCOM2660 FS","CCOM2660","CCOM2830 FS","CCOM2830",213,259,214,259,49,60,49,60,73,,"CCGT D1_Integrated Programme Schedule;(OEM) Commissioning;COLD COMMISSIONING;Electrical;400 kV Back Energization;10MKC SEE / SFC Transformers",1,1,0.0000070801,0.0006103764,0.0115971516,5,1.0,0.0002593786,0.0068493151,0.0030769231,0.0106875,0.0015665796,0.0366795367,0.0112107623,1.0,0.0729924654
1.2.2.6.1.3-5,CCOM2830,"Finalizing cold comm - torquing of connections",7112,"CCGTD1_IPS",TT_Task,"58573",-,-,-,100,TK_Complete,31/08/2019,07/11/2019,05/09/2019,07/11/2019,"CCOM2720 FS","CCOM2720","CCOM2850 FS","CCOM2850",213,259,214,259,49,60,49,60,74,,"CCGT D1_Integrated Programme Schedule;(OEM) Commissioning;COLD COMMISSIONING;Electrical;400 kV Back Energization;10MKC SEE / SFC Transformers",1,1,0.0000048029,0.0004069176,0.0118006104,5,1.0,0.0003021254,0.0068493151,0.0030769231,0.00725,0.0010443864,0.0373230373,0.0112107623,1.0,0.0905078876
1.2.2.6.1.3-6,CCOM2850,"Ready for primary injection test",7112,"CCGTD1_IPS",TT_Task,"58573",-,-,-,100,TK_Complete,31/08/2019,08/11/2019,05/09/2019,12/11/2019,"CCOM2830 FS","CCOM2830","CCOM2980 FS","CCOM2980",213,260,214,260,49,60,49,60,74,,"CCGT D1_Integrated Programme Schedule;(OEM) Commissioning;COLD COMMISSIONING;Electrical;400 kV Back Energization;10MKC SEE / SFC Transformers",1,1,0.0000024428,0.0002034588,0.0120040692,5,1.0,0.000338598,0.0068493151,0.0030769231,0.0036875,0.0005221932,0.037966538,0.0112107623,1.0,0.1054524737
1.2.2.6.1.3-7,CCOM2980,"Primary injection test planned at 9am",7112,"CCGTD1_IPS",TT_Task,"58573",-,-,-,100,TK_Complete,31/08/2019,13/11/2019,05/09/2019,14/11/2019,"CCOM2850 FS","CCOM2850","","",213,260,214,260,49,60,49,60,74,,"CCGT D1_Integrated Programme Schedule;(OEM) Commissioning;COLD COMMISSIONING;Electrical;400 kV Back Energization;10MKC SEE / SFC Transformers",1,0,0.0,0.0,0.012207528,5,1.0,0.0003696143,0.0068493151,0.0,0.0,0.0,0.0386100386,0.0112107623,1.0,0.1181613545
1.2.2.6.1.4,58572,"10 CJT SEE / SFC Equipment",7112,"CCGTD1_IPS",WBS,"58565",,,,100,Complete,31/08/2019,24/10/2019,07/07/2020,16/01/2020,,,,,213,257,257,269,49,60,60,62,,,"CCGT D1_Integrated Programme Schedule;(OEM) Commissioning;COLD COMMISSIONING;Electrical;400 kV Back Energization"
1.2.2.6.1.4-1,CCOM2450,"Handover of TOP 10CJT",7112,"CCGTD1_IPS",TT_FinMile,"58572",-,-,-,100,TK_Complete,31/08/2019,24/10/2019,31/08/2019,24/10/2019,"TOP2580 FS","TOP2580","CCOM2520 FS","CCOM2520",213,257,213,257,49,60,49,60,73,,"CCGT D1_Integrated Programme Schedule;(OEM) Commissioning;COLD COMMISSIONING;Electrical;400 kV Back Energization;10 CJT SEE / SFC Equipment",1,1,0.0000067074,0.0006103764,0.0109867752,0,1.0,0.0000812387,0.0068493151,0.0030769231,0.010125,0.0015665796,0.0347490347,0.0,1.0,0.0
1.2.2.6.1.4-2,CCOM2520,"Cold commissioning",7112,"CCGTD1_IPS",TT_Task,"58572",-,-,-,100,TK_Complete,31/08/2019,28/10/2019,05/09/2019,31/10/2019,"CCOM2450 FS","CCOM2450","CCOM3010 FS","CCOM3010",213,258,214,258,49,60,49,60,73,,"CCGT D1_Integrated Programme Schedule;(OEM) Commissioning;COLD COMMISSIONING;Electrical;400 kV Back Energization;10 CJT SEE / SFC Equipment",1,1,0.0000045544,0.0004069176,0.011190234,5,1.0,0.0001503957,0.0068493151,0.0030769231,0.006875,0.0010443864,0.0353925354,0.0112107623,1.0,0.0283369572
1.2.2.6.1.4-3,CCOM3010,"Cold commissioning - primary injection test",7112,"CCGTD1_IPS",TT_Task,"58572",-,-,-,100,TK_Complete,31/08/2019,13/11/2019,05/09/2019,16/11/2019,"CCOM2520 FS","CCOM2520","CCOM4860 FS","CCOM4860",213,260,214,261,49,60,49,60,74,,"CCGT D1_Integrated Programme Schedule;(OEM) Commissioning;COLD COMMISSIONING;Electrical;400 kV Back Energization;10 CJT SEE / SFC Equipment",1,1,0.0000023186,0.0002034588,0.0113936928,5,1.0,0.000209244,0.0068493151,0.0030769231,0.0035,0.0005221932,0.036036036,0.0112107623,1.0,0.0524499399
1.2.2.6.1.4-4,CCOM4860,"First SFC test runs",7112,"CCGTD1_IPS",TT_Task,"58572",-,-,-,100,TK_Complete,02/07/2020,15/01/2020,07/07/2020,16/01/2020,"CCOM3010 FS","CCOM3010","","",257,269,257,269,60,62,60,62,95,,"CCGT D1_Integrated Programme Schedule;(OEM) Commissioning;COLD COMMISSIONING;Electrical;400 kV Back Energization;10 CJT SEE / SFC Equipment",1,0,0.0,0.0,0.0115971516,5,1.0,0.0002593786,0.0068493151,0.0,0.0,0.0,0.0366795367,0.0112107623,1.0,0.0729924654
1.2.2.6.1.5,58571,"10BBT Transformer 10BBT",7112,"CCGTD1_IPS",WBS,"58565",,,,100,Complete,31/08/2019,07/09/2019,07/07/2020,21/12/2019,,,,,213,251,257,266,49,58,60,62,,,"CCGT D1_Integrated Programme Schedule;(OEM) Commissioning;COLD COMMISSIONING;Electrical;400 kV Back Energization"
1.2.2.6.1.5-1,CCOM1500,"Handover of TOP 10BBT",7112,"CCGTD1_IPS",TT_FinMile,"58571",-,-,-,100,TK_Complete,31/08/2019,07/09/2019,31/08/2019,07/09/2019,"TOP1770 FS","TOP1770","CCOM2390 FS","CCOM2390",213,251,213,251,49,58,49,58,73,,"CCGT D1_Integrated Programme Schedule;(OEM) Commissioning;COLD COMMISSIONING;Electrical;400 kV Back Energization;10BBT Transformer 10BBT",1,1,0.0000245111,0.0032553408,0.0075279756,0,1.0,0.0000812387,0.0068493151,0.0030769231,0.037,0.0083550914,0.0238095238,0.0,1.0,0.0
1.2.2.6.1.5-2,CCOM2390,"Fans/Pumps cold commissioning",7112,"CCGTD1_IPS",TT_Task,"58571",-,-,-,100,TK_Complete,31/08/2019,23/10/2019,05/09/2019,23/10/2019,"CCOM1500 FS","CCOM1500","CCOM2420 FS","CCOM2420",213,257,214,257,49,60,49,60,73,,"CCGT D1_Integrated Programme Schedule;(OEM) Commissioning;COLD COMMISSIONING;Electrical;400 kV Back Energization;10BBT Transformer 10BBT",1,1,0.0000236002,0.003051882,0.0077314344,5,1.0,0.0001503957,0.0068493151,0.0030769231,0.035625,0.0078328982,0.0244530245,0.0112107623,1.0,0.0283369572
1.2.2.6.1.5-3,CCOM2420,"Signal checks",7112,"CCGTD1_IPS",TT_Task,"58571",-,-,-,100,TK_Complete,31/08/2019,24/10/2019,05/09/2019,31/10/2019,"CCOM2390 FS","CCOM2390","CCOM2650 FS","CCOM2650",213,257,214,258,49,60,49,60,73,,"CCGT D1_Integrated Programme Schedule;(OEM) Commissioning;COLD COMMISSIONING;Electrical;400 kV Back Energization;10BBT Transformer 10BBT",1,1,0.0000226065,0.0028484232,0.0079348932,5,0.4,0.000209244,0.0068493151,0.0030769231,0.034125,0.007310705,0.0250965251,0.0112107623,0.4,0.0524499399
1.2.2.6.1.5-4,CCOM2650,"Commissioning test",7112,"CCGTD1_IPS",TT_Task,"58571",-,-,-,100,TK_Complete,31/08/2019,01/11/2019,05/09/2019,02/11/2019,"CCOM2420 FS","CCOM2420","CCOM2710 FS","CCOM2710",213,259,214,259,49,60,49,60,73,,"CCGT D1_Integrated Programme Schedule;(OEM) Commissioning;COLD COMMISSIONING;Electrical;400 kV Back Energization;10BBT Transformer 10BBT",1,1,0.00002153,0.0026449644,0.008138352,5,1.0,0.0002593786,0.0068493151,0.0030769231,0.0325,0.0067885117,0.0257400257,0.0112107623,1.0,0.0729924654
1.2.2.6.1.5-5,CCOM2710,"Finalization of Commissioning",7112,"CCGTD1_IPS",TT_Task,"58571",-,-,-,100,TK_Complete,31/08/2019,04/11/2019,05/09/2019,04/11/2019,"CCOM2650 FS","CCOM2650","CCOM2760 FS","CCOM2760",213,259,214,259,49,60,49,60,73,,"CCGT D1_Integrated Programme Schedule;(OEM) Commissioning;COLD COMMISSIONING;Electrical;400 kV Back Energization;10BBT Transformer 10BBT",1,1,0.0000203707,0.0024415056,0.0083418108,5,1.0,0.0003021254,0.0068493151,0.0030769231,0.03075,0.0062663185,0.0263835264,0.0112107623,1.0,0.0905078876
1.2.2.6.1.5-6,CCOM2760,"Preparation for primary injection test",7112,"CCGTD1_IPS",TT_Task,"58571",-,-,-,100,TK_Complete,31/08/2019,05/11/2019,05/09/2019,09/11/2019,"CCOM2710 FS","CCOM2710","CCOM2880 FS","CCOM2880",213,259,214,260,49,60,49,60,73,,"CCGT D1_Integrated Programme Schedule;(OEM) Commissioning;COLD COMMISSIONING;Electrical;400 kV Back Energization;10BBT Transformer 10BBT",1,1,0.0000191286,0.0022380468,0.0085452696,5,1.0,0.000338598,0.0068493151,0.0030769231,0.028875,0.0057441253,0.027027027,0.0112107623,1.0,0.1054524737
1.2.2.6.1.5-7,CCOM2880,"Final check for readiness",7112,"CCGTD1_IPS",TT_Task,"58571",-,-,-,100,TK_Complete,31/08/2019,11/11/2019,05/09/2019,11/11/2019,"CCOM2760 FS","CCOM2760","CCOM2940 FS","CCOM2940",213,260,214,260,49,60,49,60,74,,"CCGT D1_Integrated Programme Schedule;(OEM) Commissioning;COLD COMMISSIONING;Electrical;400 kV Back Energization;10BBT Transformer 10BBT",1,1,0.0000178037,0.002034588,0.0087487284,5,1.0,0.0003696143,0.0068493151,0.0030769231,0.026875,0.0052219321,0.0276705277,0.0112107623,1.0,0.1181613545
1.2.2.6.1.5-8,CCOM2940,"Ready for Primary injection test",7112,"CCGTD1_IPS",TT_Task,"58571",-,-,-,100,TK_Complete,31/08/2019,12/11/2019,05/09/2019,12/11/2019,"CCOM2880 FS","CCOM2880","CCOM2960 FS","CCOM2960",213,260,214,260,49,60,49,60,74,,"CCGT D1_Integrated Programme Schedule;(OEM) Commissioning;COLD COMMISSIONING;Electrical;400 kV Back Energization;10BBT Transformer 10BBT",1,1,0.0000163959,0.0018311292,0.0089521872,5,1.0,0.000396007,0.0068493151,0.0030769231,0.02475,0.0046997389,0.0283140283,0.0112107623,1.0,0.1289756874
1.2.2.6.1.5-9,CCOM2960,"Primary injection test planned at 9am",7112,"CCGTD1_IPS",TT_Task,"58571",-,-,-,100,TK_Complete,31/08/2019,13/11/2019,05/09/2019,13/11/2019,"CCOM2940 FS","CCOM2940","CCOM3180 FS","CCOM3180",213,260,214,260,49,60,49,60,74,,"CCGT D1_Integrated Programme Schedule;(OEM) Commissioning;COLD COMMISSIONING;Electrical;400 kV Back Energization;10BBT Transformer 10BBT",1,1,0.0000149054,0.0016276704,0.009155646,5,1.0,0.0004185845,0.0068493151,0.0030769231,0.0225,0.0041775457,0.028957529,0.0112107623,1.0,0.1382268136
1.2.2.6.1.5-10,CCOM3180,"400V Injection from GIS side (pending release from CLP)",7112,"CCGTD1_IPS",TT_Task,"58571",-,-,-,100,TK_Complete,02/07/2020,18/11/2019,07/07/2020,19/11/2019,"CCOM2960 FS","CCOM2960","CCOM3200 FS","CCOM3200",257,261,257,261,60,61,60,61,92,,"CCGT D1_Integrated Programme Schedule;(OEM) Commissioning;COLD COMMISSIONING;Electrical;400 kV Back Energization;10BBT Transformer 10BBT",1,1,0.0000133321,0.0014242116,0.0093591048,5,1.0,0.0004384472,0.0068493151,0.0030769231,0.020125,0.0036553525,0.0296010296,0.0112107623,1.0,0.1463655131
1.2.2.6.1.5-11,CCOM3200,"final check for readiness for BE",7112,"CCGTD1_IPS",TT_Task,"58571",-,-,-,100,TK_Complete,02/07/2020,21/11/2019,07/07/2020,22/11/2019,"CCOM3180 FS","CCOM3180","CCOM3220 FS","CCOM3220",257,261,257,262,60,61,60,61,92,,"CCGT D1_Integrated Programme Schedule;(OEM) Commissioning;COLD COMMISSIONING;Electrical;400 kV Back Energization;10BBT Transformer 10BBT",1,1,0.0000116759,0.0012207528,0.0095625636,5,1.0,0.0004561636,0.0068493151,0.0030769231,0.017625,0.0031331593,0.0302445302,0.0112107623,1.0,0.1536247638
1.2.2.6.1.5-12,CCOM3220,"final check for readiness for BE / walkdown",7112,"CCGTD1_IPS",TT_Task,"58571",-,-,-,100,TK_Complete,02/07/2020,28/11/2019,07/07/2020,29/11/2019,"CCOM3200 FS","CCOM3200","CCOM3230 FS,A4270 FS","CCOM3230,A4270",257,262,257,263,60,61,60,61,92,,"CCGT D1_Integrated Programme Schedule;(OEM) Commissioning;COLD COMMISSIONING;Electrical;400 kV Back Energization;10BBT Transformer 10BBT",1,2,0.0000099369,0.001017294,0.0097660224,5,1.0,0.0004902041,0.0068493151,0.0061538462,0.015,0.0026109661,0.0308880309,0.0112107623,1.0,0.1675728062
1.2.2.6.1.5-13,CCOM3230,"Outage works",7112,"CCGTD1_IPS",TT_Task,"58571",-,-,-,100,TK_Complete,02/07/2020,11/12/2019,07/07/2020,21/12/2019,"CCOM3220 FS","CCOM3220","","",257,264,257,266,60,61,60,62,92,,"CCGT D1_Integrated Programme Schedule;(OEM) Commissioning;COLD COMMISSIONING;Electrical;400 kV Back Energization;10BBT Transformer 10BBT",1,0,0.0,0.0,0.0099694812,5,0.8,0.0002671321,0.0068493151,0.0,0.0,0.0,0.0315315315,0.0112107623,0.8,0.0761694574
1.2.2.6.1.6,58570,"10BA-02 Isolated Phase Busduct Section BAC-MKA",7112,"CCGTD1_IPS",WBS,"58565",,,,100,Complete,31/08/2019,04/11/2019,31/08/2019,04/11/2019,,,,,213,259,213,259,49,60,49,60,,,"CCGT D1_Integrated Programme Schedule;(OEM) Commissioning;COLD COMMISSIONING;Electrical;400 kV Back Energization"
1.2.2.6.1.6-1,CCOM2690,"Handover of TOP 10BA-02",7112,"CCGTD1_IPS",TT_FinMile,"58570",-,-,-,100,TK_Complete,31/08/2019,04/11/2019,31/08/2019,04/11/2019,"TOP2620 FS","TOP2620","","",213,259,213,259,49,60,49,60,73,,"CCGT D1_Integrated Programme Schedule;(OEM) Commissioning;COLD COMMISSIONING;Electrical;400 kV Back Energization;10BA-02 Isolated Phase Busduct Section BAC-MKA",1,0,0.0,0.0,0.012207528,0,1.0,0.0000812387,0.0068493151,0.0,0.0,0.0,0.0386100386,0.0,1.0,0.0
1.2.2.6.1.7,58569,"10BA-01 Isolated phase Busduct Section BAT-BAC",7112,"CCGTD1_IPS",WBS,"58565",,,,100,Complete,31/08/2019,29/09/2019,31/08/2019,29/09/2019,,,,,213,254,213,254,49,59,49,59,,,"CCGT D1_Integrated Programme Schedule;(OEM) Commissioning;COLD COMMISSIONING;Electrical;400 kV Back Energization"
1.2.2.6.1.7-1,CCOM1770,"Handover of TOP 10BA-01",7112,"CCGTD1_IPS",TT_FinMile,"58569",-,-,-,100,TK_Complete,31/08/2019,29/09/2019,31/08/2019,29/09/2019,"TOP2610 FS","TOP2610","","",213,254,213,254,49,59,49,59,72,,"CCGT D1_Integrated Programme Schedule;(OEM) Commissioning;COLD COMMISSIONING;Electrical;400 kV Back Energization;10BA-01 Isolated phase Busduct Section BAT-BAC",1,0,0.0,0.0,0.012207528,0,1.0,0.0000812387,0.0068493151,0.0,0.0,0.0,0.0386100386,0.0,1.0,0.0
1.2.2.6.1.8,58568,"10CHA Generator and Unit Transformer Protection",7112,"CCGTD1_IPS",WBS,"58565",,,,100,Complete,31/08/2019,12/08/2019,07/07/2020,23/11/2019,,,,,213,247,257,262,49,57,60,61,,,"CCGT D1_Integrated Programme Schedule;(OEM) Commissioning;COLD COMMISSIONING;Electrical;400 kV Back Energization"
1.2.2.6.1.8-1,CCOM1100,"Handover of TOP 10CHA",7112,"CCGTD1_IPS",TT_FinMile,"58568",-,-,-,100,TK_Complete,31/08/2019,12/08/2019,31/08/2019,12/08/2019,"TOP1530 FS","TOP1530","CCOM1750 FS","CCOM1750",213,247,213,247,49,57,49,57,71,,"CCGT D1_Integrated Programme Schedule;(OEM) Commissioning;COLD COMMISSIONING;Electrical;400 kV Back Energization;10CHA Generator and Unit Transformer Protection",1,1,0.0000227307,0.0018311292,0.0124109868,0,1.0,0.0000812387,0.0068493151,0.0030769231,0.0343125,0.0046997389,0.0392535393,0.0,1.0,0.0
1.2.2.6.1.8-2,CCOM1750,"Cold Commissioning (Software loading)",7112,"CCGTD1_IPS",TT_Task,"58568",-,-,-,100,TK_Complete,26/09/2019,26/09/2019,02/10/2019,30/09/2019,"CCOM1100 FS","CCOM1100","CCOM1800 FS","CCOM1800",217,253,218,254,50,59,50,59,77,,"CCGT D1_Integrated Programme Schedule;(OEM) Commissioning;COLD COMMISSIONING;Electrical;400 kV Back Energization;10CHA Generator and Unit Transformer Protection",1,1,0.0000205363,0.0016276704,0.0126144456,6,1.0,0.0001503957,0.0068493151,0.0030769231,0.031,0.0041775457,0.0398970399,0.0134529148,1.0,0.0283369572
1.2.2.6.1.8-3,CCOM1800,"Preparation for Interlock testing",7112,"CCGTD1_IPS",TT_Task,"58568",-,-,-,100,TK_Complete,31/08/2019,30/09/2019,05/09/2019,02/10/2019,"CCOM1750 FS","CCOM1750","CCOM1900 FS","CCOM1900",213,254,214,254,49,59,49,59,71,,"CCGT D1_Integrated Programme Schedule;(OEM) Commissioning;COLD COMMISSIONING;Electrical;400 kV Back Energization;10CHA Generator and Unit Transformer Protection",1,1,0.0000182591,0.0014242116,0.0128179044,5,1.0,0.000209244,0.0068493151,0.0030769231,0.0275625,0.0036553525,0.0405405405,0.0112107623,1.0,0.0524499399
1.2.2.6.1.8-4,CCOM1900,"Interlock testing & prep for sec injection",7112,"CCGTD1_IPS",TT_Task,"58568",-,-,-,100,TK_Complete,31/08/2019,03/10/2019,05/09/2019,04/10/2019,"CCOM1800 FS","CCOM1800","CCOM1960 FS","CCOM1960",213,254,214,255,49,59,49,59,72,,"CCGT D1_Integrated Programme Schedule;(OEM) Commissioning;COLD COMMISSIONING;Electrical;400 kV Back Energization;10CHA Generator and Unit Transformer Protection",1,1,0.0000158991,0.0012207528,0.0130213632,5,1.0,0.0002593786,0.0068493151,0.0030769231,0.024,0.0031331593,0.0411840412,0.0112107623,1.0,0.0729924654
1.2.2.6.1.8-5,CCOM1960,"Interlock testing & sec injection",7112,"CCGTD1_IPS",TT_Task,"58568",-,-,-,100,TK_Complete,31/08/2019,09/10/2019,05/09/2019,18/10/2019,"CCOM1900 FS","CCOM1900","CCOM2350 FS","CCOM2350",213,255,214,257,49,59,49,59,72,,"CCGT D1_Integrated Programme Schedule;(OEM) Commissioning;COLD COMMISSIONING;Electrical;400 kV Back Energization;10CHA Generator and Unit Transformer Protection",1,1,0.0000134563,0.001017294,0.013224822,5,0.8,0.0003021254,0.0068493151,0.0030769231,0.0203125,0.0026109661,0.0418275418,0.0112107623,0.8,0.0905078876
1.2.2.6.1.8-6,CCOM2350,"Signal exchange SCB",7112,"CCGTD1_IPS",TT_Task,"58568",-,-,-,100,TK_Complete,31/08/2019,21/10/2019,05/09/2019,21/10/2019,"CCOM1960 FS","CCOM1960","CCOM2890 FS","CCOM2890",213,257,214,257,49,60,49,60,73,,"CCGT D1_Integrated Programme Schedule;(OEM) Commissioning;COLD COMMISSIONING;Electrical;400 kV Back Energization;10CHA Generator and Unit Transformer Protection",1,1,0.0000109306,0.0008138352,0.0134282808,5,1.0,0.000338598,0.0068493151,0.0030769231,0.0165,0.0020887728,0.0424710425,0.0112107623,1.0,0.1054524737
1.2.2.6.1.8-7,CCOM2890,"Preparation for primary injection test",7112,"CCGTD1_IPS",TT_Task,"58568",-,-,-,100,TK_Complete,31/08/2019,11/11/2019,05/09/2019,12/11/2019,"CCOM2350 FS","CCOM2350","CCOM3000 FS","CCOM3000",213,260,214,260,49,60,49,60,74,,"CCGT D1_Integrated Programme Schedule;(OEM) Commissioning;COLD COMMISSIONING;Electrical;400 kV Back Energization;10CHA Generator and Unit Transformer Protection",1,1,0.0000083222,0.0006103764,0.0136317396,5,1.0,0.0003696143,0.0068493151,0.0030769231,0.0125625,0.0015665796,0.0431145431,0.0112107623,1.0,0.1181613545
1.2.2.6.1.8-8,CCOM3000,"Primary injection test",7112,"CCGTD1_IPS",TT_Task,"58568",-,-,-,100,TK_Complete,31/08/2019,13/11/2019,05/09/2019,14/11/2019,"CCOM2890 FS","CCOM2890","CCOM3080 FS","CCOM3080",213,260,214,260,49,60,49,60,74,,"CCGT D1_Integrated Programme Schedule;(OEM) Commissioning;COLD COMMISSIONING;Electrical;400 kV Back Energization;10CHA Generator and Unit Transformer Protection",1,1,0.0000056309,0.0004069176,0.0138351984,5,1.0,0.000396007,0.0068493151,0.0030769231,0.0085,0.0010443864,0.0437580438,0.0112107623,1.0,0.1289756874
1.2.2.6.1.8-9,CCOM3080,"Implementing requested changes from CLP",7112,"CCGTD1_IPS",TT_Task,"58568",-,-,-,100,TK_Complete,31/08/2019,15/11/2019,05/09/2019,19/11/2019,"CCOM3000 FS","CCOM3000","CCOM3270 FS","CCOM3270",213,261,214,261,49,60,49,61,74,,"CCGT D1_Integrated Programme Schedule;(OEM) Commissioning;COLD COMMISSIONING;Electrical;400 kV Back Energization;10CHA Generator and Unit Transformer Protection",1,1,0.0000028569,0.0002034588,0.0140386572,5,1.0,0.0004185845,0.0068493151,0.0030769231,0.0043125,0.0005221932,0.0444015444,0.0112107623,1.0,0.1382268136
1.2.2.6.1.8-10,CCOM3270,"Interlock/Intertrip for BE",7112,"CCGTD1_IPS",TT_Task,"58568",-,-,-,100,TK_Complete,02/07/2020,18/11/2019,07/07/2020,23/11/2019,"CCOM3080 FS","CCOM3080","","",257,261,257,262,60,61,60,61,92,,"CCGT D1_Integrated Programme Schedule;(OEM) Commissioning;COLD COMMISSIONING;Electrical;400 kV Back Energization;10CHA Generator and Unit Transformer Protection",1,0,0.0,0.0,0.014242116,5,1.0,0.0004384472,0.0068493151,0.0,0.0,0.0,0.045045045,0.0112107623,1.0,0.1463655131
1.2.2.6.1.9,58567,"10BAT Transformer BAT01",7112,"CCGTD1_IPS",WBS,"58565",,,,100,Complete,31/08/2019,17/08/2019,07/07/2020,22/12/2019,,,,,213,248,257,266,49,57,60,62,,,"CCGT D1_Integrated Programme Schedule;(OEM) Commissioning;COLD COMMISSIONING;Electrical;400 kV Back Energization"
1.2.2.6.1.9-1,CCOM1140,"Handover of TOP 10BAT",7112,"CCGTD1_IPS",TT_FinMile,"58567",-,-,-,100,TK_Complete,31/08/2019,17/08/2019,31/08/2019,17/08/2019,"TOP1660 FS","TOP1660","CCOM1670 FS","CCOM1670",213,248,213,248,49,57,49,57,71,,"CCGT D1_Integrated Programme Schedule;(OEM) Commissioning;COLD COMMISSIONING;Electrical;400 kV Back Energization;10BAT Transformer BAT01",1,1,0.0000611122,0.0067141404,0.0097660224,0,1.0,0.0000812387,0.0068493151,0.0030769231,0.09225,0.017232376,0.0308880309,0.0,1.0,0.0
1.2.2.6.1.9-2,CCOM1670,"Partial draining of oil for inspection at bushings",7112,"CCGTD1_IPS",TT_Task,"58567",-,-,-,100,TK_Complete,31/08/2019,19/09/2019,05/09/2019,19/09/2019,"CCOM1140 FS","CCOM1140","CCOM1690 FS","CCOM1690",213,252,214,252,49,59,49,59,71,,"CCGT D1_Integrated Programme Schedule;(OEM) Commissioning;COLD COMMISSIONING;Electrical;400 kV Back Energization;10BAT Transformer BAT01",1,1,0.0000604497,0.0065106816,0.0099694812,5,1.0,0.0001503957,0.0068493151,0.0030769231,0.09125,0.0167101828,0.0315315315,0.0112107623,1.0,0.0283369572
1.2.2.6.1.9-3,CCOM1690,"Inspection of Internal bushing connection to Phase B",7112,"CCGTD1_IPS",TT_Task,"58567",-,-,-,100,TK_Complete,31/08/2019,20/09/2019,05/09/2019,21/09/2019,"CCOM1670 FS","CCOM1670","CCOM1710 FS","CCOM1710",213,253,214,253,49,59,49,59,71,,"CCGT D1_Integrated Programme Schedule;(OEM) Commissioning;COLD COMMISSIONING;Electrical;400 kV Back Energization;10BAT Transformer BAT01",1,1,0.0000597044,0.0063072228,0.01017294,5,1.0,0.000209244,0.0068493151,0.0030769231,0.090125,0.0161879896,0.0321750322,0.0112107623,1.0,0.0524499399
1.2.2.6.1.9-4,CCOM1710,"Preparation for rectification works",7112,"CCGTD1_IPS",TT_Task,"58567",-,-,-,100,TK_Complete,31/08/2019,23/09/2019,05/09/2019,27/09/2019,"CCOM1690 FS","CCOM1690","CCOM1740 FS","CCOM1740",213,253,214,254,49,59,49,59,71,,"CCGT D1_Integrated Programme Schedule;(OEM) Commissioning;COLD COMMISSIONING;Electrical;400 kV Back Energization;10BAT Transformer BAT01",1,1,0.0000588764,0.006103764,0.0103763988,5,1.0,0.0002593786,0.0068493151,0.0030769231,0.088875,0.0156657963,0.0328185328,0.0112107623,1.0,0.0729924654
1.2.2.6.1.9-5,CCOM1740,"Inspection with Client Consultant Engineer",7112,"CCGTD1_IPS",TT_Task,"58567",-,-,-,100,TK_Complete,31/08/2019,25/09/2019,05/09/2019,28/09/2019,"CCOM1710 FS","CCOM1710","CCOM1790 FS","CCOM1790",213,253,214,254,49,59,49,59,71,,"CCGT D1_Integrated Programme Schedule;(OEM) Commissioning;COLD COMMISSIONING;Electrical;400 kV Back Energization;10BAT Transformer BAT01",1,1,0.0000579655,0.0059003052,0.0105798576,5,1.0,0.0003021254,0.0068493151,0.0030769231,0.0875,0.0151436031,0.0334620335,0.0112107623,1.0,0.0905078876
1.2.2.6.1.9-6,CCOM1790,"FRA Test with STGZ",7112,"CCGTD1_IPS",TT_Task,"58567",-,-,-,100,TK_Complete,31/08/2019,30/09/2019,05/09/2019,30/09/2019,"CCOM1740 FS","CCOM1740","CCOM1890 FS","CCOM1890",213,254,214,254,49,59,49,59,71,,"CCGT D1_Integrated Programme Schedule;(OEM) Commissioning;COLD COMMISSIONING;Electrical;400 kV Back Energization;10BAT Transformer BAT01",1,1,0.0000569718,0.0056968464,0.0107833164,5,1.0,0.000338598,0.0068493151,0.0030769231,0.086,0.0146214099,0.0341055341,0.0112107623,1.0,0.1054524737
1.2.2.6.1.9-7,CCOM1890,"Prep Work - awaiting material delivery confirmation)",7112,"CCGTD1_IPS",TT_Task,"58567",-,-,-,100,TK_Complete,31/08/2019,02/10/2019,05/09/2019,09/10/2019,"CCOM1790 FS","CCOM1790","CCOM2010 FS","CCOM2010",213,254,214,255,49,59,49,59,72,,"CCGT D1_Integrated Programme Schedule;(OEM) Commissioning;COLD COMMISSIONING;Electrical;400 kV Back Energization;10BAT Transformer BAT01",1,1,0.0000558953,0.0054933876,0.0109867752,5,1.0,0.0003696143,0.0068493151,0.0030769231,0.084375,0.0140992167,0.0347490347,0.0112107623,1.0,0.1181613545
1.2.2.6.1.9-8,CCOM2010,"Start Rectification Works - exchange of insulation boards and installaiton of spacer",7112,"CCGTD1_IPS",TT_Task,"58567",-,-,-,100,TK_Complete,31/08/2019,10/10/2019,05/09/2019,10/10/2019,"CCOM1890 FS","CCOM1890","CCOM2070 FS","CCOM2070",213,255,214,255,49,59,49,59,72,,"CCGT D1_Integrated Programme Schedule;(OEM) Commissioning;COLD COMMISSIONING;Electrical;400 kV Back Energization;10BAT Transformer BAT01",1,1,0.000054736,0.0052899288,0.011190234,5,1.0,0.000396007,0.0068493151,0.0030769231,0.082625,0.0135770235,0.0353925354,0.0112107623,1.0,0.1289756874
1.2.2.6.1.9-9,CCOM2070,"Exchange of flange on neutral bushing & preparation for transformer testing prior to final close up",7112,"CCGTD1_IPS",TT_Task,"58567",-,-,-,100,TK_Complete,31/08/2019,11/10/2019,05/09/2019,12/10/2019,"CCOM2010 FS","CCOM2010","CCOM2130 FS","CCOM2130",213,256,214,256,49,59,49,59,72,,"CCGT D1_Integrated Programme Schedule;(OEM) Commissioning;COLD COMMISSIONING;Electrical;400 kV Back Energization;10BAT Transformer BAT01",1,1,0.0000534938,0.00508647,0.0113936928,5,1.0,0.0004185845,0.0068493151,0.0030769231,0.08075,0.0130548303,0.036036036,0.0112107623,1.0,0.1382268136
1.2.2.6.1.9-10,CCOM2130,"Vacuum pulling ongoing in preparation for oil filling",7112,"CCGTD1_IPS",TT_Task,"58567",-,-,-,100,TK_Complete,31/08/2019,14/10/2019,05/09/2019,16/10/2019,"CCOM2070 FS","CCOM2070","CCOM2270 FS","CCOM2270",213,256,214,256,49,59,49,59,72,,"CCGT D1_Integrated Programme Schedule;(OEM) Commissioning;COLD COMMISSIONING;Electrical;400 kV Back Energization;10BAT Transformer BAT01",1,1,0.0000521689,0.0048830112,0.0115971516,5,1.0,0.0004384472,0.0068493151,0.0030769231,0.07875,0.0125326371,0.0366795367,0.0112107623,1.0,0.1463655131
1.2.2.6.1.9-11,CCOM2270,"24hr vacuum hold prior to oil filling",7112,"CCGTD1_IPS",TT_Task,"58567",-,-,-,100,TK_Complete,31/08/2019,17/10/2019,05/09/2019,18/10/2019,"CCOM2130 FS","CCOM2130","CCOM2330 FS","CCOM2330",213,256,214,257,49,59,49,59,72,,"CCGT D1_Integrated Programme Schedule;(OEM) Commissioning;COLD COMMISSIONING;Electrical;400 kV Back Energization;10BAT Transformer BAT01",1,1,0.0000507612,0.0046795524,0.0118006104,5,1.0,0.0004561636,0.0068493151,0.0030769231,0.076625,0.0120104439,0.0373230373,0.0112107623,1.0,0.1536247638
1.2.2.6.1.9-12,CCOM2330,"Oil Circulation and sampling",7112,"CCGTD1_IPS",TT_Task,"58567",-,-,-,100,TK_Complete,31/08/2019,21/10/2019,05/09/2019,23/10/2019,"CCOM2270 FS","CCOM2270","CCOM2410 FS","CCOM2410",213,257,214,257,49,60,49,60,73,,"CCGT D1_Integrated Programme Schedule;(OEM) Commissioning;COLD COMMISSIONING;Electrical;400 kV Back Energization;10BAT Transformer BAT01",1,1,0.0000492706,0.0044760936,0.0120040692,5,1.0,0.0004902041,0.0068493151,0.0030769231,0.074375,0.0114882507,0.037966538,0.0112107623,1.0,0.1675728062
1.2.2.6.1.9-13,CCOM2410,"Cool down of oil in preparation for testing - Dirana test scheduled",7112,"CCGTD1_IPS",TT_Task,"58567",-,-,-,100,TK_Complete,31/08/2019,24/10/2019,05/09/2019,25/10/2019,"CCOM2330 FS","CCOM2330","CCOM2490 FS","CCOM2490",213,257,214,258,49,60,49,60,73,,"CCGT D1_Integrated Programme Schedule;(OEM) Commissioning;COLD COMMISSIONING;Electrical;400 kV Back Energization;10BAT Transformer BAT01",1,1,0.0000476973,0.0042726348,0.012207528,5,1.0,0.0004902041,0.0068493151,0.0030769231,0.072,0.0109660574,0.0386100386,0.0112107623,1.0,0.1675728062
1.2.2.6.1.9-14,CCOM2490,"Continuation of transformer testing - Winding resistance test",7112,"CCGTD1_IPS",TT_Task,"58567",-,-,-,100,TK_Complete,31/08/2019,28/10/2019,05/09/2019,28/10/2019,"CCOM2410 FS","CCOM2410","CCOM2570 FS","CCOM2570",213,258,214,258,49,60,49,60,73,,"CCGT D1_Integrated Programme Schedule;(OEM) Commissioning;COLD COMMISSIONING;Electrical;400 kV Back Energization;10BAT Transformer BAT01",1,1,0.0000460411,0.004069176,0.0124109868,5,1.0,0.0004902041,0.0068493151,0.0030769231,0.0695,0.0104438642,0.0392535393,0.0112107623,1.0,0.1675728062
1.2.2.6.1.9-15,CCOM2570,"Dirana Test",7112,"CCGTD1_IPS",TT_Task,"58567",-,-,-,100,TK_Complete,31/08/2019,29/10/2019,05/09/2019,30/10/2019,"CCOM2490 FS","CCOM2490","CCOM2630 FS","CCOM2630",213,258,214,258,49,60,49,60,73,,"CCGT D1_Integrated Programme Schedule;(OEM) Commissioning;COLD COMMISSIONING;Electrical;400 kV Back Energization;10BAT Transformer BAT01",1,1,0.0000443022,0.0038657172,0.0126144456,5,1.0,0.0004902041,0.0068493151,0.0030769231,0.066875,0.009921671,0.0398970399,0.0112107623,1.0,0.1675728062
1.2.2.6.1.9-16,CCOM2630,"Signal checks",7112,"CCGTD1_IPS",TT_Task,"58567",-,-,-,100,TK_Complete,31/08/2019,30/10/2019,05/09/2019,02/11/2019,"CCOM2570 FS","CCOM2570","CCOM2700 FS","CCOM2700",213,258,214,259,49,60,49,60,73,,"CCGT D1_Integrated Programme Schedule;(OEM) Commissioning;COLD COMMISSIONING;Electrical;400 kV Back Energization;10BAT Transformer BAT01",1,1,0.0000424804,0.0036622584,0.0128179044,5,1.0,0.0004902041,0.0068493151,0.0030769231,0.064125,0.0093994778,0.0405405405,0.0112107623,1.0,0.1675728062
1.2.2.6.1.9-17,CCOM2700,"Finalization of commissioning",7112,"CCGTD1_IPS",TT_Task,"58567",-,-,-,100,TK_Complete,31/08/2019,04/11/2019,05/09/2019,04/11/2019,"CCOM2630 FS","CCOM2630","CCOM2750 FS","CCOM2750",213,259,214,259,49,60,49,60,73,,"CCGT D1_Integrated Programme Schedule;(OEM) Commissioning;COLD COMMISSIONING;Electrical;400 kV Back Energization;10BAT Transformer BAT01",1,1,0.0000405758,0.0034587996,0.0130213632,5,1.0,0.0004902041,0.0068493151,0.0030769231,0.06125,0.0088772846,0.0411840412,0.0112107623,1.0,0.1675728062
1.2.2.6.1.9-18,CCOM2750,"Preparation for primary injection test",7112,"CCGTD1_IPS",TT_Task,"58567",-,-,-,100,TK_Complete,31/08/2019,05/11/2019,05/09/2019,09/11/2019,"CCOM2700 FS","CCOM2700","CCOM2870 FS","CCOM2870",213,259,214,260,49,60,49,60,73,,"CCGT D1_Integrated Programme Schedule;(OEM) Commissioning;COLD COMMISSIONING;Electrical;400 kV Back Energization;10BAT Transformer BAT01",1,1,0.0000385884,0.0032553408,0.013224822,5,1.0,0.0004902041,0.0068493151,0.0030769231,0.05825,0.0083550914,0.0418275418,0.0112107623,1.0,0.1675728062
1.2.2.6.1.9-19,CCOM2870,"Final check for readiness",7112,"CCGTD1_IPS",TT_Task,"58567",-,-,-,100,TK_Complete,31/08/2019,11/11/2019,05/09/2019,11/11/2019,"CCOM2750 FS","CCOM2750","CCOM2930 FS","CCOM2930",213,260,214,260,49,60,49,60,74,,"CCGT D1_Integrated Programme Schedule;(OEM) Commissioning;COLD COMMISSIONING;Electrical;400 kV Back Energization;10BAT Transformer BAT01",1,1,0.0000365182,0.003051882,0.0134282808,5,1.0,0.0004902041,0.0068493151,0.0030769231,0.055125,0.0078328982,0.0424710425,0.0112107623,1.0,0.1675728062
1.2.2.6.1.9-20,CCOM2930,"Ready for Primary injection test",7112,"CCGTD1_IPS",TT_Task,"58567",-,-,-,100,TK_Complete,31/08/2019,12/11/2019,05/09/2019,12/11/2019,"CCOM2870 FS","CCOM2870","CCOM2950 FS","CCOM2950",213,260,214,260,49,60,49,60,74,,"CCGT D1_Integrated Programme Schedule;(OEM) Commissioning;COLD COMMISSIONING;Electrical;400 kV Back Energization;10BAT Transformer BAT01",1,1,0.0000343652,0.0028484232,0.0136317396,5,1.0,0.0004902041,0.0068493151,0.0030769231,0.051875,0.007310705,0.0431145431,0.0112107623,1.0,0.1675728062
1.2.2.6.1.9-21,CCOM2950,"Primary injection planned at 9am",7112,"CCGTD1_IPS",TT_Task,"58567",-,-,-,100,TK_Complete,31/08/2019,13/11/2019,05/09/2019,13/11/2019,"CCOM2930 FS","CCOM2930","CCOM3060 FS","CCOM3060",213,260,214,260,49,60,49,60,74,,"CCGT D1_Integrated Programme Schedule;(OEM) Commissioning;COLD COMMISSIONING;Electrical;400 kV Back Energization;10BAT Transformer BAT01",1,1,0.0000321294,0.0026449644,0.0138351984,5,1.0,0.0004902041,0.0068493151,0.0030769231,0.0485,0.0067885117,0.0437580438,0.0112107623,1.0,0.1675728062
1.2.2.6.1.9-22,CCOM3060,"Signal checks oil analyzer (DGA)",7112,"CCGTD1_IPS",TT_Task,"58567",-,-,-,100,TK_Complete,31/08/2019,15/11/2019,05/09/2019,19/11/2019,"CCOM2950 FS","CCOM2950","CCOM3065 FS","CCOM3065",213,261,214,261,49,60,49,61,74,,"CCGT D1_Integrated Programme Schedule;(OEM) Commissioning;COLD COMMISSIONING;Electrical;400 kV Back Energization;10BAT Transformer BAT01",1,1,0.0000298108,0.0024415056,0.0140386572,5,1.0,0.0004902041,0.0068493151,0.0030769231,0.045,0.0062663185,0.0444015444,0.0112107623,1.0,0.1675728062
1.2.2.6.1.9-23,CCOM3140,"DGA Signal exchange CCR-LDC",7112,"CCGTD1_IPS",TT_Task,"58567",-,-,-,100,TK_Complete,02/07/2020,19/11/2019,07/07/2020,21/11/2019,"CCOM3065 FS","CCOM3065","CCOM3150 FS","CCOM3150",257,261,257,261,60,61,60,61,92,,"CCGT D1_Integrated Programme Schedule;(OEM) Commissioning;COLD COMMISSIONING;Electrical;400 kV Back Energization;10BAT Transformer BAT01",1,1,0.0000249252,0.002034588,0.0144455748,5,1.0,0.0004902041,0.0068493151,0.0030769231,0.037625,0.0052219321,0.0456885457,0.0112107623,1.0,0.1675728062
1.2.2.6.1.9-24,CCOM3150,"Interlock/Intertrip for BE",7112,"CCGTD1_IPS",TT_Task,"58567",-,-,-,100,TK_Complete,19/11/2019,20/11/2019,23/11/2019,22/11/2019,"CCOM3140 FS","CCOM3140","CCOM3190 FS","CCOM3190",224,261,225,262,52,61,52,61,82,,"CCGT D1_Integrated Programme Schedule;(OEM) Commissioning;COLD COMMISSIONING;Electrical;400 kV Back Energization;10BAT Transformer BAT01",1,1,0.0000223581,0.0018311292,0.0146490336,4,1.0,0.0004902041,0.0068493151,0.0030769231,0.03375,0.0046997389,0.0463320463,0.0089686099,1.0,0.1675728062
1.2.2.6.1.9-25,CCOM3160,"Re-Energization",7112,"CCGTD1_IPS",TT_Task,"58567",-,-,-,100,TK_Complete,02/07/2020,14/12/2019,07/07/2020,15/12/2019,"CCOM3085 FS","CCOM3085","CCOM3170 FS","CCOM3170",257,265,257,265,60,61,60,61,92,,"CCGT D1_Integrated Programme Schedule;(OEM) Commissioning;COLD COMMISSIONING;Electrical;400 kV Back Energization;10BAT Transformer BAT01",1,1,0.0000031467,0.0002034588,0.0154628688,5,1.0,0.0003048541,0.0068493151,0.0030769231,0.00475,0.0005221932,0.0489060489,0.0112107623,1.0,0.0916259795
1.2.2.6.1.9-26,CCOM3170,"Re-Energization",7112,"CCGTD1_IPS",TT_Task,"58567",-,-,-,100,TK_Complete,02/07/2020,21/12/2019,07/07/2020,22/12/2019,"CCOM3160 FS","CCOM3160","","",257,266,257,266,60,62,60,62,92,,"CCGT D1_Integrated Programme Schedule;(OEM) Commissioning;COLD COMMISSIONING;Electrical;400 kV Back Energization;10BAT Transformer BAT01",1,0,0.0,0.0,0.0156663276,5,1.0,0.0003369532,0.0068493151,0.0,0.0,0.0,0.0495495495,0.0112107623,1.0,0.1047785155
1.2.2.6.1.9-27,CCOM3065,"400V Injection from GIS side (pending release from CLP)",7112,"CCGTD1_IPS",TT_Task,"58567",-,-,-,100,TK_Complete,02/07/2020,18/11/2019,07/07/2020,19/11/2019,"CCOM3060 FS","CCOM3060","CCOM3140 FS","CCOM3140",257,261,257,261,60,61,60,61,92,,"CCGT D1_Integrated Programme Schedule;(OEM) Commissioning;COLD COMMISSIONING;Electrical;400 kV Back Energization;10BAT Transformer BAT01",1,1,0.0000274094,0.0022380468,0.014242116,5,1.0,0.0004902041,0.0068493151,0.0030769231,0.041375,0.0057441253,0.045045045,0.0112107623,1.0,0.1675728062
1.2.2.6.1.9-28,CCOM3190,"final check for readiness for BE",7112,"CCGTD1_IPS",TT_Task,"58567",-,-,-,100,TK_Complete,02/07/2020,21/11/2019,07/07/2020,22/11/2019,"CCOM3150 FS","CCOM3150","CCOM3075 FS","CCOM3075",257,261,257,262,60,61,60,61,92,,"CCGT D1_Integrated Programme Schedule;(OEM) Commissioning;COLD COMMISSIONING;Electrical;400 kV Back Energization;10BAT Transformer BAT01",1,1,0.0000197083,0.0016276704,0.0148524924,5,1.0,0.0004902041,0.0068493151,0.0030769231,0.02975,0.0041775457,0.046975547,0.0112107623,1.0,0.1675728062
1.2.2.6.1.9-29,CCOM3075,"final check for readiness for BE / walkdown",7112,"CCGTD1_IPS",TT_Task,"58567",-,-,-,100,TK_Complete,02/07/2020,28/11/2019,07/07/2020,29/11/2019,"CCOM3190 FS","CCOM3190","CCOM3085 FS,A4270 FS","CCOM3085,A4270",257,262,257,263,60,61,60,61,92,,"CCGT D1_Integrated Programme Schedule;(OEM) Commissioning;COLD COMMISSIONING;Electrical;400 kV Back Energization;10BAT Transformer BAT01",1,2,0.0000169756,0.0014242116,0.0150559512,5,1.0,0.0004902041,0.0068493151,0.0061538462,0.025625,0.0036553525,0.0476190476,0.0112107623,1.0,0.1675728062
1.2.2.6.1.9-30,CCOM3085,"Outage works",7112,"CCGTD1_IPS",TT_Task,"58567",-,-,-,100,TK_Complete,02/07/2020,11/12/2019,07/07/2020,21/12/2019,"CCOM3075 FS","CCOM3075","CCOM3160 FS","CCOM3160",257,264,257,266,60,61,60,62,92,,"CCGT D1_Integrated Programme Schedule;(OEM) Commissioning;COLD COMMISSIONING;Electrical;400 kV Back Energization;10BAT Transformer BAT01",1,1,0.0000062106,0.0004069176,0.01525941,5,0.2,0.0002671321,0.0068493151,0.0030769231,0.009375,0.0010443864,0.0482625483,0.0112107623,0.2,0.0761694574
1.2.2.6.1.10,58566,"10BF-01 LV Switchgear 10BFA / BMA / BLA",7112,"CCGTD1_IPS",WBS,"58565",,,,100,Complete,29/07/2019,29/07/2019,07/07/2020,11/01/2020,,,,,208,245,257,269,48,57,60,62,,,"CCGT D1_Integrated Programme Schedule;(OEM) Commissioning;COLD COMMISSIONING;Electrical;400 kV Back Energization"
1.2.2.6.1.10-1,CCOM1190,"System Commissioning & Energisation of Components (UBA-0204,0205)",7112,"CCGTD1_IPS",TT_Task,"58566",-,-,-,100,TK_Complete,20/08/2019,20/08/2019,24/08/2019,23/08/2019,"CCOM1080 FS","CCOM1080","CCOM1370 FS","CCOM1370",211,248,212,249,49,58,49,58,70,,"CCGT D1_Integrated Programme Schedule;(OEM) Commissioning;COLD COMMISSIONING;Electrical;400 kV Back Energization;10BF-01 LV Switchgear 10BFA / BMA / BLA",1,1,0.0000078667,0.001017294,0.0077314344,4,1.0,0.0001503957,0.0068493151,0.0030769231,0.011875,0.0026109661,0.0244530245,0.0089686099,1.0,0.0283369572
1.2.2.6.1.10-2,CCOM1070,"Handover of TOP 10BF-01",7112,"CCGTD1_IPS",TT_FinMile,"58566",-,-,-,100,TK_Complete,29/07/2019,29/07/2019,29/07/2019,29/07/2019,"","","","",208,245,208,245,48,57,48,57,67,,"CCGT D1_Integrated Programme Schedule;(OEM) Commissioning;COLD COMMISSIONING;Electrical;400 kV Back Energization;10BF-01 LV Switchgear 10BFA / BMA / BLA",0,0,0.0,0.0,0.0,0,1.0,0.0000812387,0.0,0.0,0.0,0.0,0.0,0.0,1.0,0.0
1.2.2.6.1.10-3,CCOM1080,"Handover of TOP-10BF-01",7112,"CCGTD1_IPS",TT_FinMile,"58566",-,-,-,100,TK_Complete,29/07/2019,29/07/2019,29/07/2019,29/07/2019,"TOP2670 FS","TOP2670","CCOM1190 FS","CCOM1190",208,245,208,245,48,57,48,57,67,,"CCGT D1_Integrated Programme Schedule;(OEM) Commissioning;COLD COMMISSIONING;Electrical;400 kV Back Energization;10BF-01 LV Switchgear 10BFA / BMA / BLA",1,1,0.0000091917,0.0012207528,0.0075279756,0,1.0,0.0000812387,0.0068493151,0.0030769231,0.013875,0.0031331593,0.0238095238,0.0,1.0,0.0
1.2.2.6.1.10-4,CCOM1370,"Prep work for LV Board Energization via BMT01",7112,"CCGTD1_IPS",TT_Task,"58566",-,-,-,100,TK_Complete,03/09/2019,03/09/2019,07/09/2019,05/09/2019,"CCOM1190 FS","CCOM1190","CCOM1480 FS","CCOM1480",213,250,214,250,49,58,50,58,75,,"CCGT D1_Integrated Programme Schedule;(OEM) Commissioning;COLD COMMISSIONING;Electrical;400 kV Back Energization;10BF-01 LV Switchgear 10BFA / BMA / BLA",1,1,0.000006459,0.0008138352,0.0079348932,4,1.0,0.000209244,0.0068493151,0.0030769231,0.00975,0.0020887728,0.0250965251,0.0089686099,1.0,0.0524499399
1.2.2.6.1.10-5,CCOM1480,"LV Board ready for energisation via BMT01",7112,"CCGTD1_IPS",TT_FinMile,"58566",-,-,-,100,TK_Complete,31/08/2019,06/09/2019,31/08/2019,06/09/2019,"CCOM1370 FS","CCOM1370","CCOM1540 FS","CCOM1540",213,251,213,251,49,58,49,58,71,,"CCGT D1_Integrated Programme Schedule;(OEM) Commissioning;COLD COMMISSIONING;Electrical;400 kV Back Energization;10BF-01 LV Switchgear 10BFA / BMA / BLA",1,1,0.0000049685,0.0006103764,0.008138352,0,1.0,0.0000812387,0.0068493151,0.0030769231,0.0075,0.0015665796,0.0257400257,0.0,1.0,0.0
1.2.2.6.1.10-6,CCOM1540,"BMT01 Energized",7112,"CCGTD1_IPS",TT_FinMile,"58566",-,-,-,100,TK_Complete,31/08/2019,10/09/2019,31/08/2019,10/09/2019,"CCOM1480 FS","CCOM1480","CCOM3250 FS","CCOM3250",213,251,213,251,49,58,49,58,71,,"CCGT D1_Integrated Programme Schedule;(OEM) Commissioning;COLD COMMISSIONING;Electrical;400 kV Back Energization;10BF-01 LV Switchgear 10BFA / BMA / BLA",1,1,0.0000033951,0.0004069176,0.0083418108,0,1.0,0.0000812387,0.0068493151,0.0030769231,0.005125,0.0010443864,0.0263835264,0.0,1.0,0.0
1.2.2.6.1.10-7,CCOM3250,"Energisation of first components upon requirements",7112,"CCGTD1_IPS",TT_Task,"58566",-,-,-,100,TK_Complete,18/11/2019,18/11/2019,21/12/2019,21/12/2019,"CCOM1540 FS","CCOM1540","CCOM4590 FS","CCOM4590",224,261,229,266,52,61,53,62,82,,"CCGT D1_Integrated Programme Schedule;(OEM) Commissioning;COLD COMMISSIONING;Electrical;400 kV Back Energization;10BF-01 LV Switchgear 10BFA / BMA / BLA",1,1,0.000001739,0.0002034588,0.0085452696,33,1.0,0.0001503957,0.0068493151,0.0030769231,0.002625,0.0005221932,0.027027027,0.0739910314,1.0,0.0283369572
1.2.2.6.1.10-8,CCOM4590,"Energisation of first components upon requirements",7112,"CCGTD1_IPS",TT_Task,"58566",-,-,-,100,TK_Complete,02/07/2020,06/01/2020,07/07/2020,11/01/2020,"CCOM3250 FS","CCOM3250","","",257,268,257,269,60,62,60,62,95,,"CCGT D1_Integrated Programme Schedule;(OEM) Commissioning;COLD COMMISSIONING;Electrical;400 kV Back Energization;10BF-01 LV Switchgear 10BFA / BMA / BLA",1,0,0.0,0.0,0.0087487284,5,1.0,0.000209244,0.0068493151,0.0,0.0,0.0,0.0276705277,0.0112107623,1.0,0.0524499399
1.2.2.6.2,58556,"6.6 kV (MV) Available (Station Power)",7112,"CCGTD1_IPS",WBS,"58553",,,,100,Complete,19/07/2019,19/07/2019,07/07/2020,16/01/2020,,,,,207,244,257,269,48,56,60,62,,,"CCGT D1_Integrated Programme Schedule;(OEM) Commissioning;COLD COMMISSIONING;Electrical"
1.2.2.6.2.1,58563,"(LCAL) LV Transformer",7112,"CCGTD1_IPS",WBS,"58556",,,,100,Complete,31/08/2019,14/10/2019,05/09/2019,07/11/2019,,,,,213,256,214,259,49,59,49,60,,,"CCGT D1_Integrated Programme Schedule;(OEM) Commissioning;COLD COMMISSIONING;Electrical;6.6 kV (MV) Available (Station Power)"
1.2.2.6.2.1.1,58564,"10BHV-01 LVvTransformer BFT04 / BFT05 (BHV-01)",7112,"CCGTD1_IPS",WBS,"58563",,,,100,Complete,31/08/2019,14/10/2019,05/09/2019,07/11/2019,,,,,213,256,214,259,49,59,49,60,,,"CCGT D1_Integrated Programme Schedule;(OEM) Commissioning;COLD COMMISSIONING;Electrical;6.6 kV (MV) Available (Station Power);(LCAL) LV Transformer"
1.2.2.6.2.1.1-1,CCOM2820,"Handover of TOP 10BHV-01",7112,"CCGTD1_IPS",TT_FinMile,"58564",-,-,-,100,TK_Complete,31/08/2019,07/11/2019,31/08/2019,07/11/2019,"CCOM2280 FS","CCOM2280","","",213,259,213,259,49,60,49,60,72,,"CCGT D1_Integrated Programme Schedule;(OEM) Commissioning;COLD COMMISSIONING;Electrical;6.6 kV (MV) Available (Station Power);(LCAL) LV Transformer;10BHV-01 LVvTransformer BFT04 / BFT05 (BHV-01)",1,0,0.0,0.0,0.0008138352,0,1.0,0.0000812387,0.0068493151,0.0,0.0,0.0,0.0025740026,0.0,1.0,0.0
1.2.2.6.2.1.1-2,CCOM2150,"Review of Interlcok with CLP / ARUP",7112,"CCGTD1_IPS",TT_Task,"58564",-,-,-,100,TK_Complete,31/08/2019,14/10/2019,05/09/2019,14/10/2019,"","","CCOM2190 FS","CCOM2190",213,256,214,256,49,59,49,59,72,,"CCGT D1_Integrated Programme Schedule;(OEM) Commissioning;COLD COMMISSIONING;Electrical;6.6 kV (MV) Available (Station Power);(LCAL) LV Transformer;10BHV-01 LVvTransformer BFT04 / BFT05 (BHV-01)",0,1,0.0,0.0008138352,0.0,5,1.0,0.0000812387,0.0,0.0030769231,0.0,0.0020887728,0.0,0.0112107623,1.0,0.0
1.2.2.6.2.1.1-3,CCOM2190,"Energization of BFT04 & BFT05",7112,"CCGTD1_IPS",TT_Task,"58564",-,-,-,100,TK_Complete,31/08/2019,15/10/2019,05/09/2019,15/10/2019,"CCOM2150 FS","CCOM2150","CCOM2240 FS","CCOM2240",213,256,214,256,49,59,49,59,72,,"CCGT D1_Integrated Programme Schedule;(OEM) Commissioning;COLD COMMISSIONING;Electrical;6.6 kV (MV) Available (Station Power);(LCAL) LV Transformer;10BHV-01 LVvTransformer BFT04 / BFT05 (BHV-01)",1,1,0.0000001242,0.0006103764,0.0002034588,5,1.0,0.0001503957,0.0068493151,0.0030769231,0.0001875,0.0015665796,0.0006435006,0.0112107623,1.0,0.0283369572
1.2.2.6.2.1.1-4,CCOM2240,"De-Energization of BFT04 & BFT05 for completion of",7112,"CCGTD1_IPS",TT_Task,"58564",-,-,-,100,TK_Complete,31/08/2019,16/10/2019,05/09/2019,16/10/2019,"CCOM2190 FS","CCOM2190","CCOM2280 FS","CCOM2280",213,256,214,256,49,59,49,59,72,,"CCGT D1_Integrated Programme Schedule;(OEM) Commissioning;COLD COMMISSIONING;Electrical;6.6 kV (MV) Available (Station Power);(LCAL) LV Transformer;10BHV-01 LVvTransformer BFT04 / BFT05 (BHV-01)",1,1,0.0000001656,0.0004069176,0.0004069176,5,1.0,0.000209244,0.0068493151,0.0030769231,0.00025,0.0010443864,0.0012870013,0.0112107623,1.0,0.0524499399
1.2.2.6.2.1.1-5,CCOM2280,"BFT04 / BFT05 Energized",7112,"CCGTD1_IPS",TT_Task,"58564",-,-,-,100,TK_Complete,31/08/2019,17/10/2019,05/09/2019,17/10/2019,"CCOM2240 FS","CCOM2240","CCOM2820 FS","CCOM2820",213,256,214,256,49,59,49,59,73,,"CCGT D1_Integrated Programme Schedule;(OEM) Commissioning;COLD COMMISSIONING;Electrical;6.6 kV (MV) Available (Station Power);(LCAL) LV Transformer;10BHV-01 LVvTransformer BFT04 / BFT05 (BHV-01)",1,1,0.0000001242,0.0002034588,0.0006103764,5,1.0,0.0002593786,0.0068493151,0.0030769231,0.0001875,0.0005221932,0.0019305019,0.0112107623,1.0,0.0729924654
1.2.2.6.2.2,58559,"(Siemens) LV Transformers",7112,"CCGTD1_IPS",WBS,"58556",,,,100,Complete,31/08/2019,28/08/2019,05/09/2019,16/10/2019,,,,,213,249,214,256,49,58,49,59,,,"CCGT D1_Integrated Programme Schedule;(OEM) Commissioning;COLD COMMISSIONING;Electrical;6.6 kV (MV) Available (Station Power)"
1.2.2.6.2.2.1,58562,"10BFT-02 LV Transformer BFT02",7112,"CCGTD1_IPS",WBS,"58559",,,,100,Complete,31/08/2019,29/08/2019,05/09/2019,16/10/2019,,,,,213,249,214,256,49,58,49,59,,,"CCGT D1_Integrated Programme Schedule;(OEM) Commissioning;COLD COMMISSIONING;Electrical;6.6 kV (MV) Available (Station Power);(Siemens) LV Transformers"
1.2.2.6.2.2.1-1,CCOM2030,"Preparation for Energization",7112,"CCGTD1_IPS",TT_Task,"58562",-,-,-,100,TK_Complete,31/08/2019,10/10/2019,05/09/2019,10/10/2019,"CCOM1320 FS","CCOM1320","CCOM2090 FS","CCOM2090",213,255,214,255,49,59,49,59,72,,"CCGT D1_Integrated Programme Schedule;(OEM) Commissioning;COLD COMMISSIONING;Electrical;6.6 kV (MV) Available (Station Power);(Siemens) LV Transformers;10BFT-02 LV Transformer BFT02",1,1,0.0000014491,0.0002034588,0.007121058,5,1.0,0.0001503957,0.0068493151,0.0030769231,0.0021875,0.0005221932,0.0225225225,0.0112107623,1.0,0.0283369572
1.2.2.6.2.2.1-2,CCOM1320,"Handover of TOP 10BFT-02",7112,"CCGTD1_IPS",TT_FinMile,"58562",-,-,-,100,TK_Complete,31/08/2019,29/08/2019,31/08/2019,29/08/2019,"TOP2420 FS,TOP1760 FS","TOP2420,TOP1760","CCOM2030 FS","CCOM2030",213,249,213,249,49,58,49,58,72,,"CCGT D1_Integrated Programme Schedule;(OEM) Commissioning;COLD COMMISSIONING;Electrical;6.6 kV (MV) Available (Station Power);(Siemens) LV Transformers;10BFT-02 LV Transformer BFT02",2,1,0.0000028155,0.0004069176,0.0069175992,0,1.0,0.0000812387,0.0136986301,0.0030769231,0.00425,0.0010443864,0.0218790219,0.0,1.0,0.0
1.2.2.6.2.2.1-3,CCOM2090,"Energization",7112,"CCGTD1_IPS",TT_Task,"58562",-,-,-,100,TK_Complete,31/08/2019,11/10/2019,05/09/2019,16/10/2019,"CCOM2030 FS","CCOM2030","","",213,256,214,256,49,59,49,59,72,,"CCGT D1_Integrated Programme Schedule;(OEM) Commissioning;COLD COMMISSIONING;Electrical;6.6 kV (MV) Available (Station Power);(Siemens) LV Transformers;10BFT-02 LV Transformer BFT02",1,0,0.0,0.0,0.0073245168,5,1.0,0.000209244,0.0068493151,0.0,0.0,0.0,0.0231660232,0.0112107623,1.0,0.0524499399
1.2.2.6.2.2.2,58561,"10BFT-03 LV Transformer BFT03",7112,"CCGTD1_IPS",WBS,"58559",,,,100,Complete,31/08/2019,28/08/2019,05/09/2019,05/10/2019,,,,,213,249,214,255,49,58,49,59,,,"CCGT D1_Integrated Programme Schedule;(OEM) Commissioning;COLD COMMISSIONING;Electrical;6.6 kV (MV) Available (Station Power);(Siemens) LV Transformers"
1.2.2.6.2.2.2-1,CCOM1300,"Handover of TOP 10BFT-03",7112,"CCGTD1_IPS",TT_FinMile,"58561",-,-,-,100,TK_Complete,31/08/2019,28/08/2019,31/08/2019,28/08/2019,"TOP2410 FS","TOP2410","CCOM1810 FS","CCOM1810",213,249,213,249,49,58,49,58,71,,"CCGT D1_Integrated Programme Schedule;(OEM) Commissioning;COLD COMMISSIONING;Electrical;6.6 kV (MV) Available (Station Power);(Siemens) LV Transformers;10BFT-03 LV Transformer BFT03",1,1,0.0000027327,0.0004069176,0.0067141404,0,1.0,0.0000812387,0.0068493151,0.0030769231,0.004125,0.0010443864,0.0212355212,0.0,1.0,0.0
1.2.2.6.2.2.2-2,CCOM1810,"Prep for Energisation (Final checks)",7112,"CCGTD1_IPS",TT_Task,"58561",-,-,-,100,TK_Complete,31/08/2019,30/09/2019,05/09/2019,30/09/2019,"CCOM1300 FS","CCOM1300","CCOM1860 FS","CCOM1860",213,254,214,254,49,59,49,59,72,,"CCGT D1_Integrated Programme Schedule;(OEM) Commissioning;COLD COMMISSIONING;Electrical;6.6 kV (MV) Available (Station Power);(Siemens) LV Transformers;10BFT-03 LV Transformer BFT03",1,1,0.0000014077,0.0002034588,0.0069175992,5,1.0,0.0001503957,0.0068493151,0.0030769231,0.002125,0.0005221932,0.0218790219,0.0112107623,1.0,0.0283369572
1.2.2.6.2.2.2-3,CCOM1860,"Energisation",7112,"CCGTD1_IPS",TT_Task,"58561",-,-,-,100,TK_Complete,31/08/2019,02/10/2019,05/09/2019,05/10/2019,"CCOM1810 FS","CCOM1810","","",213,254,214,255,49,59,49,59,72,,"CCGT D1_Integrated Programme Schedule;(OEM) Commissioning;COLD COMMISSIONING;Electrical;6.6 kV (MV) Available (Station Power);(Siemens) LV Transformers;10BFT-03 LV Transformer BFT03",1,0,0.0,0.0,0.007121058,5,1.0,0.000209244,0.0068493151,0.0,0.0,0.0,0.0225225225,0.0112107623,1.0,0.0524499399
1.2.2.6.2.2.3,58560,"10BFT-01 LV Transformer BFT01",7112,"CCGTD1_IPS",WBS,"58559",,,,100,Complete,31/08/2019,18/09/2019,05/09/2019,24/09/2019,,,,,213,252,214,253,49,58,49,59,,,"CCGT D1_Integrated Programme Schedule;(OEM) Commissioning;COLD COMMISSIONING;Electrical;6.6 kV (MV) Available (Station Power);(Siemens) LV Transformers"
1.2.2.6.2.2.3-1,CCOM1650,"Handover of TOP 10BFT-01",7112,"CCGTD1_IPS",TT_FinMile,"58560",-,-,-,100,TK_Complete,31/08/2019,18/09/2019,31/08/2019,18/09/2019,"TOP1750 FS","TOP1750","CCOM1660 FS","CCOM1660",213,252,213,252,49,58,49,58,71,,"CCGT D1_Integrated Programme Schedule;(OEM) Commissioning;COLD COMMISSIONING;Electrical;6.6 kV (MV) Available (Station Power);(Siemens) LV Transformers;10BFT-01 LV Transformer BFT01",1,1,0.0000027327,0.0004069176,0.0067141404,0,1.0,0.0000812387,0.0068493151,0.0030769231,0.004125,0.0010443864,0.0212355212,0.0,1.0,0.0
1.2.2.6.2.2.3-2,CCOM1660,"Commissioning Works",7112,"CCGTD1_IPS",TT_Task,"58560",-,-,-,100,TK_Complete,31/08/2019,18/09/2019,05/09/2019,23/09/2019,"CCOM1650 FS","CCOM1650","CCOM1680 FS","CCOM1680",213,252,214,253,49,58,49,59,71,,"CCGT D1_Integrated Programme Schedule;(OEM) Commissioning;COLD COMMISSIONING;Electrical;6.6 kV (MV) Available (Station Power);(Siemens) LV Transformers;10BFT-01 LV Transformer BFT01",1,1,0.0000014077,0.0002034588,0.0069175992,5,1.0,0.0001503957,0.0068493151,0.0030769231,0.002125,0.0005221932,0.0218790219,0.0112107623,1.0,0.0283369572
1.2.2.6.2.2.3-3,CCOM1680,"Energization",7112,"CCGTD1_IPS",TT_Task,"58560",-,-,-,100,TK_Complete,31/08/2019,19/09/2019,05/09/2019,24/09/2019,"CCOM1660 FS","CCOM1660","","",213,252,214,253,49,59,49,59,71,,"CCGT D1_Integrated Programme Schedule;(OEM) Commissioning;COLD COMMISSIONING;Electrical;6.6 kV (MV) Available (Station Power);(Siemens) LV Transformers;10BFT-01 LV Transformer BFT01",1,0,0.0,0.0,0.007121058,5,1.0,0.000209244,0.0068493151,0.0,0.0,0.0,0.0225225225,0.0112107623,1.0,0.0524499399
1.2.2.6.2.3,58558,"10CP-BOP-01 CPC Interface Panels ET200 in Function Area BOP (UBA Area)",7112,"CCGTD1_IPS",WBS,"58556",,,,100,Complete,17/08/2019,17/08/2019,07/07/2020,16/01/2020,,,,,211,248,257,269,49,57,60,62,,,"CCGT D1_Integrated Programme Schedule;(OEM) Commissioning;COLD COMMISSIONING;Electrical;6.6 kV (MV) Available (Station Power)"
1.2.2.6.2.3-1,CCOM1150,"Handover of TOP 10CP-BOP-01",7112,"CCGTD1_IPS",TT_FinMile,"58558",-,-,-,100,TK_Complete,17/08/2019,17/08/2019,17/08/2019,17/08/2019,"TOP2450 FS","TOP2450","CCOM1550 FS","CCOM1550",211,248,211,248,49,57,49,57,70,,"CCGT D1_Integrated Programme Schedule;(OEM) Commissioning;COLD COMMISSIONING;Electrical;6.6 kV (MV) Available (Station Power);10CP-BOP-01 CPC Interface Panels ET200 in Function Area BOP (UBA Area)",1,1,0.0000086948,0.001017294,0.0085452696,0,1.0,0.0000812387,0.0068493151,0.0030769231,0.013125,0.0026109661,0.027027027,0.0,1.0,0.0
1.2.2.6.2.3-2,CCOM1550,"Cold Commissioning",7112,"CCGTD1_IPS",TT_Task,"58558",-,-,-,100,TK_Complete,31/08/2019,10/09/2019,05/09/2019,28/09/2019,"CCOM1150 FS","CCOM1150","CCOM1850 FS","CCOM1850",213,251,214,254,49,58,49,59,71,,"CCGT D1_Integrated Programme Schedule;(OEM) Commissioning;COLD COMMISSIONING;Electrical;6.6 kV (MV) Available (Station Power);10CP-BOP-01 CPC Interface Panels ET200 in Function Area BOP (UBA Area)",1,1,0.0000071215,0.0008138352,0.0087487284,5,0.0,0.0001503957,0.0068493151,0.0030769231,0.01075,0.0020887728,0.0276705277,0.0112107623,0.0,0.0283369572
1.2.2.6.2.3-3,CCOM1850,"Cold Commissioning - PGB Signal checks",7112,"CCGTD1_IPS",TT_Task,"58558",-,-,-,100,TK_Complete,31/08/2019,30/09/2019,05/09/2019,04/10/2019,"CCOM1550 FS","CCOM1550","CCOM3570 FS","CCOM3570",213,254,214,255,49,59,49,59,72,,"CCGT D1_Integrated Programme Schedule;(OEM) Commissioning;COLD COMMISSIONING;Electrical;6.6 kV (MV) Available (Station Power);10CP-BOP-01 CPC Interface Panels ET200 in Function Area BOP (UBA Area)",1,1,0.0000054653,0.0006103764,0.0089521872,5,1.0,0.000209244,0.0068493151,0.0030769231,0.00825,0.0015665796,0.0283140283,0.0112107623,1.0,0.0524499399
1.2.2.6.2.3-4,CCOM3570,"I&C Commissioning EK,EG and PA System",7112,"CCGTD1_IPS",TT_Task,"58558",-,-,-,100,TK_Complete,02/07/2020,16/12/2019,07/07/2020,21/12/2019,"CCOM1850 FS","CCOM1850","CCOM4600 FS","CCOM4600",257,265,257,266,60,61,60,62,94,,"CCGT D1_Integrated Programme Schedule;(OEM) Commissioning;COLD COMMISSIONING;Electrical;6.6 kV (MV) Available (Station Power);10CP-BOP-01 CPC Interface Panels ET200 in Function Area BOP (UBA Area)",1,1,0.0000037264,0.0004069176,0.009155646,5,1.0,0.0002593786,0.0068493151,0.0030769231,0.005625,0.0010443864,0.028957529,0.0112107623,1.0,0.0729924654
1.2.2.6.2.3-5,CCOM4600,"I&C Commissioning EK,EG and PA System",7112,"CCGTD1_IPS",TT_Task,"58558",-,-,-,100,TK_Complete,02/07/2020,06/01/2020,07/07/2020,11/01/2020,"CCOM3570 FS","CCOM3570","CCOM4850 FS","CCOM4850",257,268,257,269,60,62,60,62,95,,"CCGT D1_Integrated Programme Schedule;(OEM) Commissioning;COLD COMMISSIONING;Electrical;6.6 kV (MV) Available (Station Power);10CP-BOP-01 CPC Interface Panels ET200 in Function Area BOP (UBA Area)",1,1,0.0000019046,0.0002034588,0.0093591048,5,1.0,0.0003021254,0.0068493151,0.0030769231,0.002875,0.0005221932,0.0296010296,0.0112107623,1.0,0.0905078876
1.2.2.6.2.3-6,CCOM4850,"I&C Commissioning EK,EG and PA System",7112,"CCGTD1_IPS",TT_Task,"58558",-,-,-,100,TK_Complete,02/07/2020,13/01/2020,07/07/2020,16/01/2020,"CCOM4600 FS","CCOM4600","","",257,269,257,269,60,62,60,62,95,,"CCGT D1_Integrated Programme Schedule;(OEM) Commissioning;COLD COMMISSIONING;Electrical;6.6 kV (MV) Available (Station Power);10CP-BOP-01 CPC Interface Panels ET200 in Function Area BOP (UBA Area)",1,0,0.0,0.0,0.0095625636,5,1.0,0.000338598,0.0068493151,0.0,0.0,0.0,0.0302445302,0.0112107623,1.0,0.1054524737
1.2.2.6.2.4,58557,"10BBA MV Distribution Switchgear BBA / BBB",7112,"CCGTD1_IPS",WBS,"58556",,,,100,Complete,19/07/2019,19/07/2019,07/07/2020,08/01/2020,,,,,207,244,257,268,48,56,60,62,,,"CCGT D1_Integrated Programme Schedule;(OEM) Commissioning;COLD COMMISSIONING;Electrical;6.6 kV (MV) Available (Station Power)"
1.2.2.6.2.4-1,CCOM1060,"Cold Commissioning",7112,"CCGTD1_IPS",TT_Task,"58557",-,-,-,100,TK_Complete,29/07/2019,29/07/2019,02/08/2019,24/08/2019,"CCOM1050 FS","CCOM1050","CCOM1280 FS,A4150 FS","CCOM1280,A4150",208,245,209,249,48,57,48,58,67,,"CCGT D1_Integrated Programme Schedule;(OEM) Commissioning;COLD COMMISSIONING;Electrical;6.6 kV (MV) Available (Station Power);10BBA MV Distribution Switchgear BBA / BBB",1,2,0.0000236002,0.003051882,0.0077314344,4,0.0,0.0001503957,0.0068493151,0.0061538462,0.035625,0.0078328982,0.0244530245,0.0089686099,0.0,0.0283369572
1.2.2.6.2.4-2,CCOM1050,"Handover of TOP 10BBA",7112,"CCGTD1_IPS",TT_FinMile,"58557",-,-,-,100,TK_Complete,19/07/2019,19/07/2019,19/07/2019,19/07/2019,"TOP1490 FS","TOP1490","CCOM1060 FS","CCOM1060",207,244,207,244,48,56,48,56,66,,"CCGT D1_Integrated Programme Schedule;(OEM) Commissioning;COLD COMMISSIONING;Electrical;6.6 kV (MV) Available (Station Power);10BBA MV Distribution Switchgear BBA / BBB",1,1,0.0000245111,0.0032553408,0.0075279756,0,1.0,0.0000812387,0.0068493151,0.0030769231,0.037,0.0083550914,0.0238095238,0.0,1.0,0.0
1.2.2.6.2.4-3,CCOM1280,"Initial Interlock testing",7112,"CCGTD1_IPS",TT_Task,"58557",-,-,-,100,TK_Complete,26/08/2019,26/08/2019,30/08/2019,28/08/2019,"CCOM1060 FS","CCOM1060","CCOM1330 FS","CCOM1330",212,249,213,249,49,58,49,58,70,,"CCGT D1_Integrated Programme Schedule;(OEM) Commissioning;COLD COMMISSIONING;Electrical;6.6 kV (MV) Available (Station Power);10BBA MV Distribution Switchgear BBA / BBB",1,1,0.0000209918,0.0026449644,0.0079348932,4,1.0,0.000209244,0.0068493151,0.0030769231,0.0316875,0.0067885117,0.0250965251,0.0089686099,1.0,0.0524499399
1.2.2.6.2.4-4,CCOM1360,"Feeder commissioning",7112,"CCGTD1_IPS",TT_Task,"58557",-,-,-,100,TK_Complete,03/09/2019,03/09/2019,07/09/2019,10/09/2019,"CCOM1330 FS","CCOM1330","CCOM1510 FF","CCOM1510",213,250,214,251,49,58,50,58,75,,"CCGT D1_Integrated Programme Schedule;(OEM) Commissioning;COLD COMMISSIONING;Electrical;6.6 kV (MV) Available (Station Power);10BBA MV Distribution Switchgear BBA / BBB",1,1,0.0000186732,0.0022380468,0.0083418108,4,0.6,0.0003021254,0.0068493151,0.0030769231,0.0281875,0.0057441253,0.0263835264,0.0089686099,0.6,0.0905078876
1.2.2.6.2.4-5,CCOM1510,"Energisation of BMT01",7112,"CCGTD1_IPS",TT_FinMile,"58557",-,-,-,100,TK_Complete,31/08/2019,09/09/2019,31/08/2019,09/09/2019,"CCOM1360 FF","CCOM1360","CCOM2340 FS","CCOM2340",213,251,213,251,49,58,49,58,71,,"CCGT D1_Integrated Programme Schedule;(OEM) Commissioning;COLD COMMISSIONING;Electrical;6.6 kV (MV) Available (Station Power);10BBA MV Distribution Switchgear BBA / BBB",1,1,0.0000173896,0.002034588,0.0085452696,0,1.0,0.0000812387,0.0068493151,0.0030769231,0.02625,0.0052219321,0.027027027,0.0,1.0,0.0
1.2.2.6.2.4-6,CCOM1330,"Interlock testing with CLP",7112,"CCGTD1_IPS",TT_Task,"58557",-,-,-,100,TK_Complete,31/08/2019,30/08/2019,05/09/2019,30/08/2019,"CCOM1280 FS","CCOM1280","CCOM1360 FS","CCOM1360",213,250,214,250,49,58,49,58,72,,"CCGT D1_Integrated Programme Schedule;(OEM) Commissioning;COLD COMMISSIONING;Electrical;6.6 kV (MV) Available (Station Power);10BBA MV Distribution Switchgear BBA / BBB",1,1,0.0000198739,0.0024415056,0.008138352,5,1.0,0.0002593786,0.0068493151,0.0030769231,0.03,0.0062663185,0.0257400257,0.0112107623,1.0,0.0729924654
1.2.2.6.2.4-7,CCOM2340,"Feeder commissioning - 10MBU25AP001",7112,"CCGTD1_IPS",TT_Task,"58557",-,-,-,100,TK_Complete,31/08/2019,21/10/2019,05/09/2019,25/10/2019,"CCOM1510 FS","CCOM1510","CCOM2500 FS","CCOM2500",213,257,214,258,49,60,49,60,73,,"CCGT D1_Integrated Programme Schedule;(OEM) Commissioning;COLD COMMISSIONING;Electrical;6.6 kV (MV) Available (Station Power);10BBA MV Distribution Switchgear BBA / BBB",1,1,0.0000160233,0.0018311292,0.0087487284,5,1.0,0.0001503957,0.0068493151,0.0030769231,0.0241875,0.0046997389,0.0276705277,0.0112107623,1.0,0.0283369572
1.2.2.6.2.4-8,CCOM2500,"Feeder commissioning - 10LCB11/12AP001",7112,"CCGTD1_IPS",TT_Task,"58557",-,-,-,100,TK_Complete,31/08/2019,28/10/2019,05/09/2019,04/11/2019,"CCOM2340 FS","CCOM2340","CCOM2640 FS","CCOM2640",213,258,214,259,49,60,49,60,73,,"CCGT D1_Integrated Programme Schedule;(OEM) Commissioning;COLD COMMISSIONING;Electrical;6.6 kV (MV) Available (Station Power);10BBA MV Distribution Switchgear BBA / BBB",1,1,0.0000145742,0.0016276704,0.0089521872,5,1.0,0.000209244,0.0068493151,0.0030769231,0.022,0.0041775457,0.0283140283,0.0112107623,1.0,0.0524499399
1.2.2.6.2.4-9,CCOM2640,"Rotation check - 10MBU25AP001",7112,"CCGTD1_IPS",TT_Task,"58557",-,-,-,100,TK_Complete,31/08/2019,31/10/2019,05/09/2019,31/10/2019,"CCOM2500 FS","CCOM2500","CCOM2770 FS","CCOM2770",213,258,214,258,49,60,49,60,73,,"CCGT D1_Integrated Programme Schedule;(OEM) Commissioning;COLD COMMISSIONING;Electrical;6.6 kV (MV) Available (Station Power);10BBA MV Distribution Switchgear BBA / BBB",1,1,0.0000130422,0.0014242116,0.009155646,5,1.0,0.0002593786,0.0068493151,0.0030769231,0.0196875,0.0036553525,0.028957529,0.0112107623,1.0,0.0729924654
1.2.2.6.2.4-10,CCOM2770,"De-energization of BBA for LCAL works inside MV room",7112,"CCGTD1_IPS",TT_Task,"58557",-,-,-,100,TK_Complete,31/08/2019,05/11/2019,05/09/2019,12/11/2019,"CCOM2640 FS","CCOM2640","CCOM2970 FS","CCOM2970",213,259,214,260,49,60,49,60,73,,"CCGT D1_Integrated Programme Schedule;(OEM) Commissioning;COLD COMMISSIONING;Electrical;6.6 kV (MV) Available (Station Power);10BBA MV Distribution Switchgear BBA / BBB",1,1,0.0000114275,0.0012207528,0.0093591048,5,0.8,0.0003021254,0.0068493151,0.0030769231,0.01725,0.0031331593,0.0296010296,0.0112107623,0.8,0.0905078876
1.2.2.6.2.4-11,CCOM2970,"Primary injection start planned at 9am",7112,"CCGTD1_IPS",TT_Task,"58557",-,-,-,100,TK_Complete,31/08/2019,13/11/2019,05/09/2019,14/11/2019,"CCOM2770 FS","CCOM2770","CCOM3070 FS","CCOM3070",213,260,214,260,49,60,49,60,74,,"CCGT D1_Integrated Programme Schedule;(OEM) Commissioning;COLD COMMISSIONING;Electrical;6.6 kV (MV) Available (Station Power);10BBA MV Distribution Switchgear BBA / BBB",1,1,0.0000097299,0.001017294,0.0095625636,5,1.0,0.000338598,0.0068493151,0.0030769231,0.0146875,0.0026109661,0.0302445302,0.0112107623,1.0,0.1054524737
1.2.2.6.2.4-12,CCOM3070,"MV feeder commissioning",7112,"CCGTD1_IPS",TT_Task,"58557",-,-,-,100,TK_Complete,31/08/2019,15/11/2019,05/09/2019,20/11/2019,"CCOM2970 FS","CCOM2970","CCOM3210 FS","CCOM3210",213,261,214,261,49,60,49,61,74,,"CCGT D1_Integrated Programme Schedule;(OEM) Commissioning;COLD COMMISSIONING;Electrical;6.6 kV (MV) Available (Station Power);10BBA MV Distribution Switchgear BBA / BBB",1,1,0.0000079496,0.0008138352,0.0097660224,5,1.0,0.0003696143,0.0068493151,0.0030769231,0.012,0.0020887728,0.0308880309,0.0112107623,1.0,0.1181613545
1.2.2.6.2.4-13,CCOM3210,"Feeder commissioning 10LAC11/12AP001,10PAC11/12AP001",7112,"CCGTD1_IPS",TT_Task,"58557",-,-,-,100,TK_Complete,02/07/2020,18/11/2019,07/07/2020,30/11/2019,"CCOM3070 FS","CCOM3070","CCOM3240 FS","CCOM3240",257,261,257,263,60,61,60,61,92,,"CCGT D1_Integrated Programme Schedule;(OEM) Commissioning;COLD COMMISSIONING;Electrical;6.6 kV (MV) Available (Station Power);10BBA MV Distribution Switchgear BBA / BBB",1,1,0.0000060864,0.0006103764,0.0099694812,5,0.0,0.000396007,0.0068493151,0.0030769231,0.0091875,0.0015665796,0.0315315315,0.0112107623,0.0,0.1289756874
1.2.2.6.2.4-14,CCOM3240,"Supporting MV motor test runs",7112,"CCGTD1_IPS",TT_Task,"58557",-,-,-,100,TK_Complete,02/07/2020,09/12/2019,07/07/2020,14/12/2019,"CCOM3210 FS","CCOM3210","CCOM4570 FS","CCOM4570",257,264,257,265,60,61,60,61,92,,"CCGT D1_Integrated Programme Schedule;(OEM) Commissioning;COLD COMMISSIONING;Electrical;6.6 kV (MV) Available (Station Power);10BBA MV Distribution Switchgear BBA / BBB",1,1,0.0000041404,0.0004069176,0.01017294,5,1.0,0.0004185845,0.0068493151,0.0030769231,0.00625,0.0010443864,0.0321750322,0.0112107623,1.0,0.1382268136
1.2.2.6.2.4-15,CCOM4570,"De-energization of BBB for civil completion works inside room 206",7112,"CCGTD1_IPS",TT_Task,"58557",-,-,-,100,TK_Complete,02/07/2020,06/01/2020,07/07/2020,07/01/2020,"CCOM3240 FS","CCOM3240","CCOM4580 FS","CCOM4580",257,268,257,268,60,62,60,62,95,,"CCGT D1_Integrated Programme Schedule;(OEM) Commissioning;COLD COMMISSIONING;Electrical;6.6 kV (MV) Available (Station Power);10BBA MV Distribution Switchgear BBA / BBB",1,1,0.0000021116,0.0002034588,0.0103763988,5,1.0,0.0004384472,0.0068493151,0.0030769231,0.0031875,0.0005221932,0.0328185328,0.0112107623,1.0,0.1463655131
1.2.2.6.2.4-16,CCOM4580,"Re-energization of BBB busbar",7112,"CCGTD1_IPS",TT_Task,"58557",-,-,-,100,TK_Complete,02/07/2020,08/01/2020,07/07/2020,08/01/2020,"CCOM4570 FS","CCOM4570","","",257,268,257,268,60,62,60,62,95,,"CCGT D1_Integrated Programme Schedule;(OEM) Commissioning;COLD COMMISSIONING;Electrical;6.6 kV (MV) Available (Station Power);10BBA MV Distribution Switchgear BBA / BBB",1,0,0.0,0.0,0.0105798576,5,1.0,0.0004561636,0.0068493151,0.0,0.0,0.0,0.0334620335,0.0112107623,1.0,0.1536247638
1.2.2.6.3,58554,"DC Power Available",7112,"CCGTD1_IPS",WBS,"58553",,,,100,Complete,16/08/2019,16/08/2019,05/09/2019,16/10/2019,,,,,211,248,214,256,49,57,49,59,,,"CCGT D1_Integrated Programme Schedule;(OEM) Commissioning;COLD COMMISSIONING;Electrical"
1.2.2.6.3.1,58555,"10BT Battery Systems",7112,"CCGTD1_IPS",WBS,"58554",,,,100,Complete,16/08/2019,16/08/2019,05/09/2019,16/10/2019,,,,,211,248,214,256,49,57,49,59,,,"CCGT D1_Integrated Programme Schedule;(OEM) Commissioning;COLD COMMISSIONING;Electrical;DC Power Available"
1.2.2.6.3.1-1,CCOM1160,"Acid Filling UBA-0104",7112,"CCGTD1_IPS",TT_Task,"58555",-,-,-,100,TK_Complete,20/08/2019,20/08/2019,20/08/2019,20/08/2019,"CCOM1120 FS","CCOM1120","CCOM1230 FS","CCOM1230",211,248,211,248,49,58,49,58,70,,"CCGT D1_Integrated Programme Schedule;(OEM) Commissioning;COLD COMMISSIONING;Electrical;DC Power Available;10BT Battery Systems",1,1,0.0000096885,0.0012207528,0.0079348932,0,1.0,0.0000812387,0.0068493151,0.0030769231,0.014625,0.0031331593,0.0250965251,0.0,1.0,0.0
1.2.2.6.3.1-2,CCOM1120,"Handover of TOP 10BT-01",7112,"CCGTD1_IPS",TT_FinMile,"58555",-,-,-,100,TK_Complete,16/08/2019,16/08/2019,16/08/2019,16/08/2019,"TOP2550 FS","TOP2550","CCOM1160 FS","CCOM1160",211,248,211,248,49,57,49,57,70,,"CCGT D1_Integrated Programme Schedule;(OEM) Commissioning;COLD COMMISSIONING;Electrical;DC Power Available;10BT Battery Systems",1,1,0.0000110134,0.0014242116,0.0077314344,0,1.0,0.0000812387,0.0068493151,0.0030769231,0.016625,0.0036553525,0.0244530245,0.0,1.0,0.0
1.2.2.6.3.1-3,CCOM1230,"Battery charging (First Bank)",7112,"CCGTD1_IPS",TT_Task,"58555",-,-,-,100,TK_Complete,21/08/2019,21/08/2019,26/08/2019,22/08/2019,"CCOM1160 FS","CCOM1160","CCOM1250 FS","CCOM1250",212,248,212,248,49,58,49,58,70,,"CCGT D1_Integrated Programme Schedule;(OEM) Commissioning;COLD COMMISSIONING;Electrical;DC Power Available;10BT Battery Systems",1,1,0.0000082808,0.001017294,0.008138352,5,1.0,0.0001503957,0.0068493151,0.0030769231,0.0125,0.0026109661,0.0257400257,0.0112107623,1.0,0.0283369572
1.2.2.6.3.1-4,CCOM1250,"Preparation for Battery charging (Second Bank)",7112,"CCGTD1_IPS",TT_Task,"58555",-,-,-,100,TK_Complete,26/08/2019,26/08/2019,30/08/2019,26/08/2019,"CCOM1230 FS","CCOM1230","CCOM1290 FS","CCOM1290",212,249,213,249,49,58,49,58,70,,"CCGT D1_Integrated Programme Schedule;(OEM) Commissioning;COLD COMMISSIONING;Electrical;DC Power Available;10BT Battery Systems",1,1,0.0000067902,0.0008138352,0.0083418108,4,1.0,0.000209244,0.0068493151,0.0030769231,0.01025,0.0020887728,0.0263835264,0.0089686099,1.0,0.0524499399
1.2.2.6.3.1-5,CCOM1290,"Battery charging (Second Bank)",7112,"CCGTD1_IPS",TT_Task,"58555",-,-,-,100,TK_Complete,27/08/2019,27/08/2019,28/08/2019,28/08/2019,"CCOM1250 FS","CCOM1250","CCOM1950 FS","CCOM1950",212,249,213,249,49,58,49,58,70,,"CCGT D1_Integrated Programme Schedule;(OEM) Commissioning;COLD COMMISSIONING;Electrical;DC Power Available;10BT Battery Systems",1,1,0.0000052169,0.0006103764,0.0085452696,1,1.0,0.0002593786,0.0068493151,0.0030769231,0.007875,0.0015665796,0.027027027,0.0022421525,1.0,0.0729924654
1.2.2.6.3.1-6,CCOM1950,"Discharge test from 1st Bank",7112,"CCGTD1_IPS",TT_Task,"58555",-,-,-,100,TK_Complete,31/08/2019,09/10/2019,05/09/2019,09/10/2019,"CCOM1290 FS","CCOM1290","CCOM2020 FS","CCOM2020",213,255,214,255,49,59,49,59,72,,"CCGT D1_Integrated Programme Schedule;(OEM) Commissioning;COLD COMMISSIONING;Electrical;DC Power Available;10BT Battery Systems",1,1,0.0000035607,0.0004069176,0.0087487284,5,1.0,0.0003021254,0.0068493151,0.0030769231,0.005375,0.0010443864,0.0276705277,0.0112107623,1.0,0.0905078876
1.2.2.6.3.1-7,CCOM2020,"Preparation for 2nd Discharge test",7112,"CCGTD1_IPS",TT_Task,"58555",-,-,-,100,TK_Complete,31/08/2019,10/10/2019,05/09/2019,10/10/2019,"CCOM1950 FS","CCOM1950","CCOM2080 FS","CCOM2080",213,255,214,255,49,59,49,59,72,,"CCGT D1_Integrated Programme Schedule;(OEM) Commissioning;COLD COMMISSIONING;Electrical;DC Power Available;10BT Battery Systems",1,1,0.0000018218,0.0002034588,0.0089521872,5,1.0,0.000338598,0.0068493151,0.0030769231,0.00275,0.0005221932,0.0283140283,0.0112107623,1.0,0.1054524737
1.2.2.6.3.1-8,CCOM2080,"2nd Discharge test",7112,"CCGTD1_IPS",TT_Task,"58555",-,-,-,100,TK_Complete,31/08/2019,11/10/2019,05/09/2019,16/10/2019,"CCOM2020 FS","CCOM2020","","",213,256,214,256,49,59,49,59,72,,"CCGT D1_Integrated Programme Schedule;(OEM) Commissioning;COLD COMMISSIONING;Electrical;DC Power Available;10BT Battery Systems",1,0,0.0,0.0,0.009155646,5,1.0,0.0003696143,0.0068493151,0.0,0.0,0.0,0.028957529,0.0112107623,1.0,0.1181613545
1.2.2.7,58520,"Mechanical",7112,"CCGTD1_IPS",WBS,"58519",,,,100,Complete,23/05/2019,22/05/2019,07/07/2020,,,,,,199,235,257,,46,55,60,,,,"CCGT D1_Integrated Programme Schedule;(OEM) Commissioning;COLD COMMISSIONING"
1.2.2.7.1,58552,"EG Fuel Oil System",7112,"CCGTD1_IPS",WBS,"58520",,,,,NotStart,,,,,,,,,,,,,,,,,,,"CCGT D1_Integrated Programme Schedule;(OEM) Commissioning;COLD COMMISSIONING;Mechanical"
1.2.2.7.2,58551,"EK Fuel Gas System",7112,"CCGTD1_IPS",WBS,"58520",,,,,NotStart,,,,,,,,,,,,,,,,,,,"CCGT D1_Integrated Programme Schedule;(OEM) Commissioning;COLD COMMISSIONING;Mechanical"
1.2.2.7.3,58541,"Chemical Clean",7112,"CCGTD1_IPS",WBS,"58520",,,,100,Complete,31/08/2019,20/09/2019,07/07/2020,12/02/2020,,,,,213,253,257,273,49,59,60,63,,,"CCGT D1_Integrated Programme Schedule;(OEM) Commissioning;COLD COMMISSIONING;Mechanical"
1.2.2.7.3.1,58542,"Systems for Chem Clean",7112,"CCGTD1_IPS",WBS,"58541",,,,100,Complete,31/08/2019,20/09/2019,07/07/2020,12/02/2020,,,,,213,253,257,273,49,59,60,63,,,"CCGT D1_Integrated Programme Schedule;(OEM) Commissioning;COLD COMMISSIONING;Mechanical;Chemical Clean"
1.2.2.7.3.1.1,58547,"10QFB Instrument Air Distribution system",7112,"CCGTD1_IPS",WBS,"58542",,,,100,Complete,31/08/2019,31/10/2019,07/07/2020,12/02/2020,,,,,213,258,257,273,49,60,60,63,,,"CCGT D1_Integrated Programme Schedule;(OEM) Commissioning;COLD COMMISSIONING;Mechanical;Chemical Clean;Systems for Chem Clean"
1.2.2.7.3.1.1-1,CCOM2920,"Blow out of sysem branch lines, service test",7112,"CCGTD1_IPS",TT_Task,"58547",-,-,-,100,TK_Complete,31/08/2019,12/11/2019,05/09/2019,13/11/2019,"CCOM2910 FS","CCOM2910","CCOM3050 FS","CCOM3050",213,260,214,260,49,60,49,60,74,,"CCGT D1_Integrated Programme Schedule;(OEM) Commissioning;COLD COMMISSIONING;Mechanical;Chemical Clean;Systems for Chem Clean;10QFB Instrument Air Distribution system",1,1,0.0000003312,0.0008138352,0.0004069176,5,1.0,0.0001158172,0.0068493151,0.0030769231,0.0005,0.0020887728,0.0012870013,0.0112107623,1.0,0.0141684786
1.2.2.7.3.1.1-2,CCOM3050,"System in service",7112,"CCGTD1_IPS",TT_Mile,"58547",-,-,-,100,TK_Complete,31/08/2019,14/11/2019,31/08/2019,14/11/2019,"CCOM2920 FS","CCOM2920","CCOM3120 FS","CCOM3120",213,260,213,260,49,60,49,60,74,,"CCGT D1_Integrated Programme Schedule;(OEM) Commissioning;COLD COMMISSIONING;Mechanical;Chemical Clean;Systems for Chem Clean;10QFB Instrument Air Distribution system",1,1,0.0000003726,0.0006103764,0.0006103764,0,1.0,0.0000812387,0.0068493151,0.0030769231,0.0005625,0.0015665796,0.0019305019,0.0,1.0,0.0
1.2.2.7.3.1.1.1,58550,"10QFB-03",7112,"CCGTD1_IPS",WBS,"58547",,,,100,Complete,02/07/2020,12/02/2020,02/07/2020,12/02/2020,,,,,257,273,257,273,60,63,60,63,,,"CCGT D1_Integrated Programme Schedule;(OEM) Commissioning;COLD COMMISSIONING;Mechanical;Chemical Clean;Systems for Chem Clean;10QFB Instrument Air Distribution system"
1.2.2.7.3.1.1.1-1,CCOM3130,"Handover of TOP 10QFB-03",7112,"CCGTD1_IPS",TT_FinMile,"58550",-,-,-,100,TK_Complete,02/07/2020,12/02/2020,02/07/2020,12/02/2020,"TOP1190 FS,CCOM3120 FS","TOP1190,CCOM3120","","",257,273,257,273,60,63,60,63,92,,"CCGT D1_Integrated Programme Schedule;(OEM) Commissioning;COLD COMMISSIONING;Mechanical;Chemical Clean;Systems for Chem Clean;10QFB Instrument Air Distribution system;10QFB-03",2,0,0.0,0.0,0.0038657172,0,1.0,0.0000812387,0.0136986301,0.0,0.0,0.0,0.0122265122,0.0,1.0,0.0
1.2.2.7.3.1.1.2,58549,"10QFB-02",7112,"CCGTD1_IPS",WBS,"58547",,,,100,Complete,02/09/2019,11/11/2019,07/07/2020,10/12/2019,,,,,213,260,257,264,49,60,60,61,,,"CCGT D1_Integrated Programme Schedule;(OEM) Commissioning;COLD COMMISSIONING;Mechanical;Chemical Clean;Systems for Chem Clean;10QFB Instrument Air Distribution system"
1.2.2.7.3.1.1.2-1,CCOM3120,"Handover of TOP 10QFB-02",7112,"CCGTD1_IPS",TT_FinMile,"58549",-,-,-,100,TK_Complete,02/09/2019,05/12/2019,02/09/2019,05/12/2019,"CCOM3050 FS,CCOM3550 FS","CCOM3050,CCOM3550","CCOM3130 FS,CCOM3560 FS","CCOM3130,CCOM3560",213,263,213,263,49,61,49,61,75,,"CCGT D1_Integrated Programme Schedule;(OEM) Commissioning;COLD COMMISSIONING;Mechanical;Chemical Clean;Systems for Chem Clean;10QFB Instrument Air Distribution system;10QFB-02",2,2,0.0000004968,0.0004069176,0.0012207528,0,1.0,0.0000812387,0.0136986301,0.0061538462,0.00075,0.0010443864,0.0038610039,0.0,1.0,0.0
1.2.2.7.3.1.1.2-2,CCOM3540,"system commissioning, leakage check and air blow (pending TOP)",7112,"CCGTD1_IPS",TT_Task,"58549",-,-,-,100,TK_Complete,02/07/2020,11/11/2019,07/07/2020,23/11/2019,"","","CCOM3550 FS","CCOM3550",257,260,257,262,60,60,60,61,93,,"CCGT D1_Integrated Programme Schedule;(OEM) Commissioning;COLD COMMISSIONING;Mechanical;Chemical Clean;Systems for Chem Clean;10QFB Instrument Air Distribution system;10QFB-02",0,1,0.0,0.0008138352,0.0,5,0.4,0.0000812387,0.0,0.0030769231,0.0,0.0020887728,0.0,0.0112107623,0.4,0.0
1.2.2.7.3.1.1.2-3,CCOM3550,"system commissioning, leakage check and air blow (pending TOP)",7112,"CCGTD1_IPS",TT_Task,"58549",-,-,-,100,TK_Complete,02/07/2020,26/11/2019,07/07/2020,30/11/2019,"CCOM3540 FS","CCOM3540","CCOM3120 FS","CCOM3120",257,262,257,263,60,61,60,61,93,,"CCGT D1_Integrated Programme Schedule;(OEM) Commissioning;COLD COMMISSIONING;Mechanical;Chemical Clean;Systems for Chem Clean;10QFB Instrument Air Distribution system;10QFB-02",1,1,0.0000001242,0.0006103764,0.0002034588,5,1.0,0.0001503957,0.0068493151,0.0030769231,0.0001875,0.0015665796,0.0006435006,0.0112107623,1.0,0.0283369572
1.2.2.7.3.1.1.2-4,CCOM3560,"System blow out",7112,"CCGTD1_IPS",TT_Task,"58549",-,-,-,100,TK_Complete,02/07/2020,09/12/2019,07/07/2020,10/12/2019,"CCOM3120 FS","CCOM3120","","",257,264,257,264,60,61,60,61,93,,"CCGT D1_Integrated Programme Schedule;(OEM) Commissioning;COLD COMMISSIONING;Mechanical;Chemical Clean;Systems for Chem Clean;10QFB Instrument Air Distribution system;10QFB-02",1,0,0.0,0.0,0.0014242116,5,1.0,0.0001503957,0.0068493151,0.0,0.0,0.0,0.0045045045,0.0112107623,1.0,0.0283369572
1.2.2.7.3.1.1.3,58548,"10QFB-01",7112,"CCGTD1_IPS",WBS,"58547",,,,100,Complete,31/08/2019,31/10/2019,07/07/2020,16/11/2019,,,,,213,258,257,261,49,60,60,60,,,"CCGT D1_Integrated Programme Schedule;(OEM) Commissioning;COLD COMMISSIONING;Mechanical;Chemical Clean;Systems for Chem Clean;10QFB Instrument Air Distribution system"
1.2.2.7.3.1.1.3-1,CCOM2910,"Handover of TOP 10QFB-01",7112,"CCGTD1_IPS",TT_FinMile,"58548",-,-,-,100,TK_Complete,31/08/2019,11/11/2019,31/08/2019,11/11/2019,"CCOM3520 FS","CCOM3520","CCOM2920 FS,CCOM3530 FS","CCOM2920,CCOM3530",213,260,213,260,49,60,49,60,74,,"CCGT D1_Integrated Programme Schedule;(OEM) Commissioning;COLD COMMISSIONING;Mechanical;Chemical Clean;Systems for Chem Clean;10QFB Instrument Air Distribution system;10QFB-01",1,2,0.0000002484,0.0012207528,0.0002034588,0,1.0,0.0000812387,0.0068493151,0.0061538462,0.000375,0.0031331593,0.0006435006,0.0,1.0,0.0
1.2.2.7.3.1.1.3-2,CCOM3520,"system commissioning, leakage check and air blow",7112,"CCGTD1_IPS",TT_Task,"58548",-,-,-,100,TK_Complete,02/07/2020,31/10/2019,07/07/2020,02/11/2019,"","","CCOM2910 FS","CCOM2910",257,258,257,259,60,60,60,60,93,,"CCGT D1_Integrated Programme Schedule;(OEM) Commissioning;COLD COMMISSIONING;Mechanical;Chemical Clean;Systems for Chem Clean;10QFB Instrument Air Distribution system;10QFB-01",0,1,0.0,0.0014242116,0.0,5,1.0,0.0000812387,0.0,0.0030769231,0.0,0.0036553525,0.0,0.0112107623,1.0,0.0
1.2.2.7.3.1.1.3-3,CCOM3530,"system commissioning, leakage check and air blow",7112,"CCGTD1_IPS",TT_Task,"58548",-,-,-,100,TK_Complete,02/07/2020,12/11/2019,07/07/2020,16/11/2019,"CCOM2910 FS","CCOM2910","","",257,260,257,261,60,60,60,60,93,,"CCGT D1_Integrated Programme Schedule;(OEM) Commissioning;COLD COMMISSIONING;Mechanical;Chemical Clean;Systems for Chem Clean;10QFB Instrument Air Distribution system;10QFB-01",1,0,0.0,0.0,0.0004069176,5,1.0,0.0001158172,0.0068493151,0.0,0.0,0.0,0.0012870013,0.0112107623,1.0,0.0141684786
1.2.2.7.3.1.2,58546,"10LAB Feedwater system",7112,"CCGTD1_IPS",WBS,"58542",,,,100,Complete,31/08/2019,04/11/2019,05/09/2019,30/11/2019,,,,,213,259,214,263,49,60,49,61,,,"CCGT D1_Integrated Programme Schedule;(OEM) Commissioning;COLD COMMISSIONING;Mechanical;Chemical Clean;Systems for Chem Clean"
1.2.2.7.3.1.2-1,CCOM2740,"Handover of TOP 10LAB",7112,"CCGTD1_IPS",TT_FinMile,"58546",-,-,-,100,TK_Complete,31/08/2019,04/11/2019,31/08/2019,04/11/2019,"TOP1930 FS","TOP1930","CCOM2800 FS","CCOM2800",213,259,213,259,49,60,49,60,73,,"CCGT D1_Integrated Programme Schedule;(OEM) Commissioning;COLD COMMISSIONING;Mechanical;Chemical Clean;Systems for Chem Clean;10LAB Feedwater system",1,1,0.0000101026,0.0004069176,0.0248219736,0,1.0,0.0000812387,0.0068493151,0.0030769231,0.01525,0.0010443864,0.0785070785,0.0,1.0,0.0
1.2.2.7.3.1.2-2,CCOM2800,"Cold commissioning",7112,"CCGTD1_IPS",TT_Task,"58546",-,-,-,100,TK_Complete,31/08/2019,05/11/2019,05/09/2019,30/11/2019,"CCOM2740 FS","CCOM2740","CCOM2840 SS","CCOM2840",213,259,214,263,49,60,49,61,74,,"CCGT D1_Integrated Programme Schedule;(OEM) Commissioning;COLD COMMISSIONING;Mechanical;Chemical Clean;Systems for Chem Clean;10LAB Feedwater system",1,1,0.0000050927,0.0002034588,0.0250254323,5,0.0,0.0001503957,0.0068493151,0.0030769231,0.0076875,0.0005221932,0.0791505792,0.0112107623,0.0,0.0283369572
1.2.2.7.3.1.2-3,CCOM2840,"Check of interlocks, commissioning of components",7112,"CCGTD1_IPS",TT_Task,"58546",-,-,-,100,TK_Complete,31/08/2019,07/11/2019,05/09/2019,11/11/2019,"CCOM2800 SS","CCOM2800","","",213,259,214,260,49,60,49,60,74,,"CCGT D1_Integrated Programme Schedule;(OEM) Commissioning;COLD COMMISSIONING;Mechanical;Chemical Clean;Systems for Chem Clean;10LAB Feedwater system",1,0,0.0,0.0,0.0252288911,5,1.0,0.000209244,0.0068493151,0.0,0.0,0.0,0.0797940798,0.0112107623,1.0,0.0524499399
1.2.2.7.3.1.3,58545,"10LCA Main Condensate Supply & Preheating System",7112,"CCGTD1_IPS",WBS,"58542",,,,100,Complete,31/08/2019,15/10/2019,07/07/2020,13/12/2019,,,,,213,256,257,265,49,59,60,61,,,"CCGT D1_Integrated Programme Schedule;(OEM) Commissioning;COLD COMMISSIONING;Mechanical;Chemical Clean;Systems for Chem Clean"
1.2.2.7.3.1.3-1,CCOM3110,"Handover of TOP 10LCA",7112,"CCGTD1_IPS",TT_FinMile,"58545",-,-,-,100,TK_Complete,31/08/2019,28/11/2019,31/08/2019,28/11/2019,"TOP1410 FS,CCOM3340 FS","TOP1410,CCOM3340","CCOM3350 FS","CCOM3350",213,262,213,262,49,61,49,61,72,,"CCGT D1_Integrated Programme Schedule;(OEM) Commissioning;COLD COMMISSIONING;Mechanical;Chemical Clean;Systems for Chem Clean;10LCA Main Condensate Supply & Preheating System",2,1,0.0000011179,0.0002034588,0.0054933876,0,1.0,0.0000812387,0.0136986301,0.0030769231,0.0016875,0.0005221932,0.0173745174,0.0,1.0,0.0
1.2.2.7.3.1.3-2,CCOM2220,"Rotation check and motor solo run for vibration check (LCA51/52AP001)",7112,"CCGTD1_IPS",TT_Task,"58545",-,-,-,100,TK_Complete,31/08/2019,15/10/2019,05/09/2019,18/10/2019,"","","CCOM3330 FS","CCOM3330",213,256,214,257,49,59,49,59,72,,"CCGT D1_Integrated Programme Schedule;(OEM) Commissioning;COLD COMMISSIONING;Mechanical;Chemical Clean;Systems for Chem Clean;10LCA Main Condensate Supply & Preheating System",0,1,0.0,0.0008138352,0.0,5,1.0,0.0000812387,0.0,0.0030769231,0.0,0.0020887728,0.0,0.0112107623,1.0,0.0
1.2.2.7.3.1.3-3,CCOM3330,"cold commissioning, preparation for oil flushing (pending TOP)",7112,"CCGTD1_IPS",TT_Task,"58545",-,-,-,100,TK_Complete,02/07/2020,20/11/2019,07/07/2020,23/11/2019,"CCOM2220 FS","CCOM2220","CCOM3340 FS","CCOM3340",257,261,257,262,60,61,60,61,92,,"CCGT D1_Integrated Programme Schedule;(OEM) Commissioning;COLD COMMISSIONING;Mechanical;Chemical Clean;Systems for Chem Clean;10LCA Main Condensate Supply & Preheating System",1,1,0.0000001242,0.0006103764,0.0002034588,5,1.0,0.0001503957,0.0068493151,0.0030769231,0.0001875,0.0015665796,0.0006435006,0.0112107623,1.0,0.0283369572
1.2.2.7.3.1.3-4,CCOM3340,"cold commissioning, preparation for oil flushing (pending TOP)",7112,"CCGTD1_IPS",TT_Task,"58545",-,-,-,100,TK_Complete,02/07/2020,27/11/2019,07/07/2020,30/11/2019,"CCOM3330 FS","CCOM3330","CCOM3110 FS","CCOM3110",257,262,257,263,60,61,60,61,92,,"CCGT D1_Integrated Programme Schedule;(OEM) Commissioning;COLD COMMISSIONING;Mechanical;Chemical Clean;Systems for Chem Clean;10LCA Main Condensate Supply & Preheating System",1,1,0.0000001656,0.0004069176,0.0004069176,5,1.0,0.000209244,0.0068493151,0.0030769231,0.00025,0.0010443864,0.0012870013,0.0112107623,1.0,0.0524499399
1.2.2.7.3.1.3-5,CCOM3350,"System in service for flushing",7112,"CCGTD1_IPS",TT_Task,"58545",-,-,-,100,TK_Complete,02/07/2020,09/12/2019,07/07/2020,13/12/2019,"CCOM3110 FS","CCOM3110","","",257,264,257,265,60,61,60,61,92,,"CCGT D1_Integrated Programme Schedule;(OEM) Commissioning;COLD COMMISSIONING;Mechanical;Chemical Clean;Systems for Chem Clean;10LCA Main Condensate Supply & Preheating System",1,0,0.0,0.0,0.0056968464,5,1.0,0.0001503957,0.0068493151,0.0,0.0,0.0,0.018018018,0.0112107623,1.0,0.0283369572
1.2.2.7.3.1.4,58544,"SCA / SCB Compressed Air System",7112,"CCGTD1_IPS",WBS,"58542",,,,100,Complete,31/08/2019,04/10/2019,05/09/2019,31/10/2019,,,,,213,255,214,258,49,59,49,60,,,"CCGT D1_Integrated Programme Schedule;(OEM) Commissioning;COLD COMMISSIONING;Mechanical;Chemical Clean;Systems for Chem Clean"
1.2.2.7.3.1.4-1,CCOM2310,"Handover of TOP 10SCB",7112,"CCGTD1_IPS",TT_FinMile,"58544",-,-,-,100,TK_Complete,31/08/2019,19/10/2019,31/08/2019,19/10/2019,"CCOM2180 FS","CCOM2180","CCOM2380 FS","CCOM2380",213,257,213,257,49,60,49,60,72,,"CCGT D1_Integrated Programme Schedule;(OEM) Commissioning;COLD COMMISSIONING;Mechanical;Chemical Clean;Systems for Chem Clean;SCA / SCB Compressed Air System",1,1,0.0000016148,0.0006103764,0.0026449644,0,1.0,0.0000812387,0.0068493151,0.0030769231,0.0024375,0.0015665796,0.0083655084,0.0,1.0,0.0
1.2.2.7.3.1.4-2,CCOM1940,"Handover of TOP 00SCB",7112,"CCGTD1_IPS",TT_FinMile,"58544",-,-,-,100,TK_Complete,31/08/2019,04/10/2019,31/08/2019,04/10/2019,"TOP2290 FS","TOP2290","CCOM2000 FS","CCOM2000",213,255,213,255,49,59,49,59,72,,"CCGT D1_Integrated Programme Schedule;(OEM) Commissioning;COLD COMMISSIONING;Mechanical;Chemical Clean;Systems for Chem Clean;SCA / SCB Compressed Air System",1,1,0.0000026084,0.0014242116,0.0018311292,0,1.0,0.0000812387,0.0068493151,0.0030769231,0.0039375,0.0036553525,0.0057915058,0.0,1.0,0.0
1.2.2.7.3.1.4-3,CCOM2000,"Initial pressurizing of compressed air skid",7112,"CCGTD1_IPS",TT_Task,"58544",-,-,-,100,TK_Complete,31/08/2019,09/10/2019,05/09/2019,11/10/2019,"CCOM1940 FS","CCOM1940","CCOM2060 SS,CCOM2060 FF","CCOM2060,CCOM2060",213,255,214,256,49,59,49,59,72,,"CCGT D1_Integrated Programme Schedule;(OEM) Commissioning;COLD COMMISSIONING;Mechanical;Chemical Clean;Systems for Chem Clean;SCA / SCB Compressed Air System",1,1,0.0000024842,0.0012207528,0.002034588,5,1.0,0.0001503957,0.0068493151,0.0030769231,0.00375,0.0031331593,0.0064350064,0.0112107623,1.0,0.0283369572
1.2.2.7.3.1.4-4,CCOM2060,"Preparation for piping service test and air blow",7112,"CCGTD1_IPS",TT_Task,"58544",-,-,-,100,TK_Complete,31/08/2019,10/10/2019,05/09/2019,11/10/2019,"CCOM2000 SS,CCOM2000 FF","CCOM2000,CCOM2000","CCOM2180 FS","CCOM2180",213,255,214,256,49,59,49,59,72,,"CCGT D1_Integrated Programme Schedule;(OEM) Commissioning;COLD COMMISSIONING;Mechanical;Chemical Clean;Systems for Chem Clean;SCA / SCB Compressed Air System",1,1,0.0000022772,0.001017294,0.0022380468,5,1.0,0.000209244,0.0068493151,0.0030769231,0.0034375,0.0026109661,0.0070785071,0.0112107623,1.0,0.0524499399
1.2.2.7.3.1.4-5,CCOM2180,"System operation and preparation for air blow of system piping",7112,"CCGTD1_IPS",TT_Task,"58544",-,-,-,100,TK_Complete,31/08/2019,14/10/2019,05/09/2019,14/10/2019,"CCOM2060 FS","CCOM2060","CCOM2310 FS","CCOM2310",213,256,214,256,49,59,49,59,72,,"CCGT D1_Integrated Programme Schedule;(OEM) Commissioning;COLD COMMISSIONING;Mechanical;Chemical Clean;Systems for Chem Clean;SCA / SCB Compressed Air System",1,1,0.0000019874,0.0008138352,0.0024415056,5,1.0,0.0002593786,0.0068493151,0.0030769231,0.003,0.0020887728,0.0077220077,0.0112107623,1.0,0.0729924654
1.2.2.7.3.1.4-6,CCOM2380,"Preparation for air blow out",7112,"CCGTD1_IPS",TT_Task,"58544",-,-,-,100,TK_Complete,31/08/2019,22/10/2019,05/09/2019,23/10/2019,"CCOM2310 FS","CCOM2310","CCOM2430 FS","CCOM2430",213,257,214,257,49,60,49,60,73,,"CCGT D1_Integrated Programme Schedule;(OEM) Commissioning;COLD COMMISSIONING;Mechanical;Chemical Clean;Systems for Chem Clean;SCA / SCB Compressed Air System",1,1,0.0000011593,0.0004069176,0.0028484232,5,1.0,0.0001503957,0.0068493151,0.0030769231,0.00175,0.0010443864,0.009009009,0.0112107623,1.0,0.0283369572
1.2.2.7.3.1.4-7,CCOM2430,"Initial air blow out @12.00",7112,"CCGTD1_IPS",TT_Task,"58544",-,-,-,100,TK_Complete,31/08/2019,24/10/2019,05/09/2019,25/10/2019,"CCOM2380 FS","CCOM2380","CCOM2550 FS","CCOM2550",213,257,214,258,49,60,49,60,73,,"CCGT D1_Integrated Programme Schedule;(OEM) Commissioning;COLD COMMISSIONING;Mechanical;Chemical Clean;Systems for Chem Clean;SCA / SCB Compressed Air System",1,1,0.0000006211,0.0002034588,0.003051882,5,1.0,0.000209244,0.0068493151,0.0030769231,0.0009375,0.0005221932,0.0096525097,0.0112107623,1.0,0.0524499399
1.2.2.7.3.1.4-8,CCOM2550,"Service test completed, system normalised",7112,"CCGTD1_IPS",TT_Task,"58544",-,-,-,100,TK_Complete,31/08/2019,28/10/2019,05/09/2019,31/10/2019,"CCOM2430 FS","CCOM2430","","",213,258,214,258,49,60,49,60,73,,"CCGT D1_Integrated Programme Schedule;(OEM) Commissioning;COLD COMMISSIONING;Mechanical;Chemical Clean;Systems for Chem Clean;SCA / SCB Compressed Air System",1,0,0.0,0.0,0.0032553408,5,1.0,0.0002593786,0.0068493151,0.0,0.0,0.0,0.0102960103,0.0112107623,1.0,0.0729924654
1.2.2.7.3.1.5,58543,"10MAX ST Hydraulic System",7112,"CCGTD1_IPS",WBS,"58542",,,,100,Complete,31/08/2019,20/09/2019,05/09/2019,12/10/2019,,,,,213,253,214,256,49,59,49,59,,,"CCGT D1_Integrated Programme Schedule;(OEM) Commissioning;COLD COMMISSIONING;Mechanical;Chemical Clean;Systems for Chem Clean"
1.2.2.7.3.1.5-1,CCOM2110,"Handover of TOP 10MAX",7112,"CCGTD1_IPS",TT_FinMile,"58543",-,-,-,100,TK_Complete,31/08/2019,12/10/2019,31/08/2019,12/10/2019,"TOP1180 FS,CCOM1760 FS","TOP1180,CCOM1760","","",213,256,213,256,49,59,49,59,71,,"CCGT D1_Integrated Programme Schedule;(OEM) Commissioning;COLD COMMISSIONING;Mechanical;Chemical Clean;Systems for Chem Clean;10MAX ST Hydraulic System",2,0,0.0,0.0,0.0197355036,0,1.0,0.0000812387,0.0136986301,0.0,0.0,0.0,0.0624195624,0.0,1.0,0.0
1.2.2.7.3.1.5-2,CCOM1700,"Prep of Pumps for Construction oil flushing",7112,"CCGTD1_IPS",TT_Task,"58543",-,-,-,100,TK_Complete,31/08/2019,20/09/2019,05/09/2019,20/09/2019,"","","CCOM1730 FS","CCOM1730",213,253,214,253,49,59,49,59,71,,"CCGT D1_Integrated Programme Schedule;(OEM) Commissioning;COLD COMMISSIONING;Mechanical;Chemical Clean;Systems for Chem Clean;10MAX ST Hydraulic System",0,1,0.0,0.0006103764,0.0,5,1.0,0.0000812387,0.0,0.0030769231,0.0,0.0015665796,0.0,0.0112107623,1.0,0.0
1.2.2.7.3.1.5-3,CCOM1730,"Support prep for Construction oil flushing",7112,"CCGTD1_IPS",TT_Task,"58543",-,-,-,100,TK_Complete,31/08/2019,23/09/2019,05/09/2019,26/09/2019,"CCOM1700 FS","CCOM1700","CCOM1760 FS","CCOM1760",213,253,214,253,49,59,49,59,71,,"CCGT D1_Integrated Programme Schedule;(OEM) Commissioning;COLD COMMISSIONING;Mechanical;Chemical Clean;Systems for Chem Clean;10MAX ST Hydraulic System",1,1,0.0000000828,0.0004069176,0.0002034588,5,1.0,0.0001503957,0.0068493151,0.0030769231,0.000125,0.0010443864,0.0006435006,0.0112107623,1.0,0.0283369572
1.2.2.7.3.1.5-4,CCOM1760,"Restoration Works after Construction Flushing completion",7112,"CCGTD1_IPS",TT_Task,"58543",-,-,-,100,TK_Complete,31/08/2019,27/09/2019,05/09/2019,04/10/2019,"CCOM1730 FS","CCOM1730","CCOM2110 FS","CCOM2110",213,254,214,255,49,59,49,59,71,,"CCGT D1_Integrated Programme Schedule;(OEM) Commissioning;COLD COMMISSIONING;Mechanical;Chemical Clean;Systems for Chem Clean;10MAX ST Hydraulic System",1,1,0.0000000828,0.0002034588,0.0004069176,5,1.0,0.000209244,0.0068493151,0.0030769231,0.000125,0.0005221932,0.0012870013,0.0112107623,1.0,0.0524499399
1.2.2.7.4,58526,"Turboset Turning Gear",7112,"CCGTD1_IPS",WBS,"58520",,,,100,Complete,08/08/2019,08/08/2019,07/07/2020,,,,,,210,246,257,,49,57,60,,,,"CCGT D1_Integrated Programme Schedule;(OEM) Commissioning;COLD COMMISSIONING;Mechanical"
1.2.2.7.4.1,58539,"Generator Ready for First Fire",7112,"CCGTD1_IPS",WBS,"58526",,,,100,Complete,31/08/2019,17/10/2019,07/07/2020,11/12/2019,,,,,213,256,257,264,49,59,60,61,,,"CCGT D1_Integrated Programme Schedule;(OEM) Commissioning;COLD COMMISSIONING;Mechanical;Turboset Turning Gear"
1.2.2.7.4.1.1,58540,"10MKF Generator Primary Water Cooling System",7112,"CCGTD1_IPS",WBS,"58539",,,,100,Complete,31/08/2019,17/10/2019,07/07/2020,11/12/2019,,,,,213,256,257,264,49,59,60,61,,,"CCGT D1_Integrated Programme Schedule;(OEM) Commissioning;COLD COMMISSIONING;Mechanical;Turboset Turning Gear;Generator Ready for First Fire"
1.2.2.7.4.1.1-1,CCOM2460,"Handover of TOP 10MKF",7112,"CCGTD1_IPS",TT_FinMile,"58540",-,-,-,100,TK_Complete,31/08/2019,25/10/2019,31/08/2019,25/10/2019,"TOP1210 FS,CCOM2300 FS","TOP1210,CCOM2300","CCOM2530 FS","CCOM2530",213,258,213,258,49,60,49,60,73,,"CCGT D1_Integrated Programme Schedule;(OEM) Commissioning;COLD COMMISSIONING;Mechanical;Turboset Turning Gear;Generator Ready for First Fire;10MKF Generator Primary Water Cooling System",2,1,0.0000248423,0.0012207528,0.02034588,0,1.0,0.0000812387,0.0136986301,0.0030769231,0.0375,0.0031331593,0.0643500644,0.0,1.0,0.0
1.2.2.7.4.1.1-2,CCOM2300,"Motor rotation checks",7112,"CCGTD1_IPS",TT_Task,"58540",-,-,-,100,TK_Complete,31/08/2019,17/10/2019,05/09/2019,18/10/2019,"","","CCOM2460 FS","CCOM2460",213,256,214,257,49,59,49,59,73,,"CCGT D1_Integrated Programme Schedule;(OEM) Commissioning;COLD COMMISSIONING;Mechanical;Turboset Turning Gear;Generator Ready for First Fire;10MKF Generator Primary Water Cooling System",0,1,0.0,0.0014242116,0.0,5,1.0,0.0000812387,0.0,0.0030769231,0.0,0.0036553525,0.0,0.0112107623,1.0,0.0
1.2.2.7.4.1.1-3,CCOM2530,"Initial filling & flushing of system",7112,"CCGTD1_IPS",TT_Task,"58540",-,-,-,100,TK_Complete,31/08/2019,28/10/2019,05/09/2019,07/11/2019,"CCOM2460 FS","CCOM2460","CCOM2860 FS","CCOM2860",213,258,214,259,49,60,49,60,73,,"CCGT D1_Integrated Programme Schedule;(OEM) Commissioning;COLD COMMISSIONING;Mechanical;Turboset Turning Gear;Generator Ready for First Fire;10MKF Generator Primary Water Cooling System",1,1,0.000020909,0.001017294,0.0205493388,5,0.8,0.0001503957,0.0068493151,0.0030769231,0.0315625,0.0026109661,0.064993565,0.0112107623,0.8,0.0283369572
1.2.2.7.4.1.1-4,CCOM2860,"Flushing on HOLD",7112,"CCGTD1_IPS",TT_Task,"58540",-,-,-,100,TK_Complete,31/08/2019,08/11/2019,05/09/2019,13/11/2019,"CCOM2530 FS","CCOM2530","CCOM3440 FS","CCOM3440",213,260,214,260,49,60,49,60,74,,"CCGT D1_Integrated Programme Schedule;(OEM) Commissioning;COLD COMMISSIONING;Mechanical;Turboset Turning Gear;Generator Ready for First Fire;10MKF Generator Primary Water Cooling System",1,1,0.0000168928,0.0008138352,0.0207527976,5,1.0,0.000209244,0.0068493151,0.0030769231,0.0255,0.0020887728,0.0656370656,0.0112107623,1.0,0.0524499399
1.2.2.7.4.1.1-5,CCOM3440,"System flushing",7112,"CCGTD1_IPS",TT_Task,"58540",-,-,-,100,TK_Complete,02/07/2020,11/11/2019,07/07/2020,13/11/2019,"CCOM2860 FS","CCOM2860","CCOM3450 FS","CCOM3450",257,260,257,260,60,60,60,60,92,,"CCGT D1_Integrated Programme Schedule;(OEM) Commissioning;COLD COMMISSIONING;Mechanical;Turboset Turning Gear;Generator Ready for First Fire;10MKF Generator Primary Water Cooling System",1,1,0.0000127938,0.0006103764,0.0209562564,5,1.0,0.0002593786,0.0068493151,0.0030769231,0.0193125,0.0015665796,0.0662805663,0.0112107623,1.0,0.0729924654
1.2.2.7.4.1.1-6,CCOM3450,"System flushing pending filter delivery",7112,"CCGTD1_IPS",TT_Task,"58540",-,-,-,100,TK_Complete,02/07/2020,20/11/2019,07/07/2020,23/11/2019,"CCOM3440 FS","CCOM3440","CCOM3460 FS","CCOM3460",257,261,257,262,60,61,60,61,92,,"CCGT D1_Integrated Programme Schedule;(OEM) Commissioning;COLD COMMISSIONING;Mechanical;Turboset Turning Gear;Generator Ready for First Fire;10MKF Generator Primary Water Cooling System",1,1,0.000008612,0.0004069176,0.0211597152,5,1.0,0.0003021254,0.0068493151,0.0030769231,0.013,0.0010443864,0.0669240669,0.0112107623,1.0,0.0905078876
1.2.2.7.4.1.1-7,CCOM3460,"System flushing pending filter delivery",7112,"CCGTD1_IPS",TT_Task,"58540",-,-,-,100,TK_Complete,02/07/2020,27/11/2019,07/07/2020,30/11/2019,"CCOM3450 FS","CCOM3450","CCOM3470 FS","CCOM3470",257,262,257,263,60,61,60,61,92,,"CCGT D1_Integrated Programme Schedule;(OEM) Commissioning;COLD COMMISSIONING;Mechanical;Turboset Turning Gear;Generator Ready for First Fire;10MKF Generator Primary Water Cooling System",1,1,0.0000043474,0.0002034588,0.021363174,5,1.0,0.000338598,0.0068493151,0.0030769231,0.0065625,0.0005221932,0.0675675676,0.0112107623,1.0,0.1054524737
1.2.2.7.4.1.1-8,CCOM3470,"System restoration",7112,"CCGTD1_IPS",TT_Task,"58540",-,-,-,100,TK_Complete,02/07/2020,09/12/2019,07/07/2020,11/12/2019,"CCOM3460 FS","CCOM3460","","",257,264,257,264,60,61,60,61,92,,"CCGT D1_Integrated Programme Schedule;(OEM) Commissioning;COLD COMMISSIONING;Mechanical;Turboset Turning Gear;Generator Ready for First Fire;10MKF Generator Primary Water Cooling System",1,0,0.0,0.0,0.0215666328,5,1.0,0.0003696143,0.0068493151,0.0,0.0,0.0,0.0682110682,0.0112107623,1.0,0.1181613545
1.2.2.7.4.2,58538,"Generator Leak Test",7112,"CCGTD1_IPS",WBS,"58526",,,,,NotStart,,,,,,,,,,,,,,,,,,,"CCGT D1_Integrated Programme Schedule;(OEM) Commissioning;COLD COMMISSIONING;Mechanical;Turboset Turning Gear"
1.2.2.7.4.3,58532,"Gas Turbine on Turning Gear",7112,"CCGTD1_IPS",WBS,"58526",,,,100,Complete,08/08/2019,08/08/2019,07/07/2020,09/01/2020,,,,,210,246,257,268,49,57,60,62,,,"CCGT D1_Integrated Programme Schedule;(OEM) Commissioning;COLD COMMISSIONING;Mechanical;Turboset Turning Gear"
1.2.2.7.4.3.1,58537,"10MBX2x GT Pneumatic System",7112,"CCGTD1_IPS",WBS,"58532",,,,100,Complete,31/08/2019,29/09/2019,05/09/2019,19/11/2019,,,,,213,254,214,261,49,59,49,61,,,"CCGT D1_Integrated Programme Schedule;(OEM) Commissioning;COLD COMMISSIONING;Mechanical;Turboset Turning Gear;Gas Turbine on Turning Gear"
1.2.2.7.4.3.1-1,CCOM1780,"Handover of 10MBX2x",7112,"CCGTD1_IPS",TT_FinMile,"58537",-,-,-,100,TK_Complete,31/08/2019,29/09/2019,31/08/2019,29/09/2019,"TOP1330 FS","TOP1330","CCOM3040 FS","CCOM3040",213,254,213,254,49,59,49,59,74,,"CCGT D1_Integrated Programme Schedule;(OEM) Commissioning;COLD COMMISSIONING;Mechanical;Turboset Turning Gear;Gas Turbine on Turning Gear;10MBX2x GT Pneumatic System",1,1,0.0000016562,0.0002034588,0.008138352,0,1.0,0.0000812387,0.0068493151,0.0030769231,0.0025,0.0005221932,0.0257400257,0.0,1.0,0.0
1.2.2.7.4.3.1-2,CCOM3040,"Pneumatic valve commisioning",7112,"CCGTD1_IPS",TT_Task,"58537",-,-,-,100,TK_Complete,31/08/2019,14/11/2019,05/09/2019,19/11/2019,"CCOM1780 FS","CCOM1780","","",213,260,214,261,49,60,49,61,74,,"CCGT D1_Integrated Programme Schedule;(OEM) Commissioning;COLD COMMISSIONING;Mechanical;Turboset Turning Gear;Gas Turbine on Turning Gear;10MBX2x GT Pneumatic System",1,0,0.0,0.0,0.0083418108,5,1.0,0.0001503957,0.0068493151,0.0,0.0,0.0,0.0263835264,0.0112107623,1.0,0.0283369572
1.2.2.7.4.3.2,58536,"10MBA Gas Turbine Sysstem",7112,"CCGTD1_IPS",WBS,"58532",,,,100,Complete,31/08/2019,05/11/2019,07/07/2020,09/01/2020,,,,,213,259,257,268,49,60,60,62,,,"CCGT D1_Integrated Programme Schedule;(OEM) Commissioning;COLD COMMISSIONING;Mechanical;Turboset Turning Gear;Gas Turbine on Turning Gear"
1.2.2.7.4.3.2-1,CCOM3100,"Handover of TOP 10MBA",7112,"CCGTD1_IPS",TT_FinMile,"58536",-,-,-,100,TK_Complete,31/08/2019,21/11/2019,31/08/2019,21/11/2019,"TOP1260 FS,CCOM2780 FS,CCOM2780 FF,CCOM3390 FS","TOP1260,CCOM2780,CCOM2780,CCOM3390","CCOM3400 FS","CCOM3400",213,261,213,261,49,61,49,61,73,,"CCGT D1_Integrated Programme Schedule;(OEM) Commissioning;COLD COMMISSIONING;Mechanical;Turboset Turning Gear;Gas Turbine on Turning Gear;10MBA Gas Turbine Sysstem",3,1,0.0000195012,0.0006103764,0.0319430315,0,1.0,0.0000812387,0.0205479452,0.0030769231,0.0294375,0.0015665796,0.101029601,0.0,1.0,0.0
1.2.2.7.4.3.2-2,CCOM2780,"IGV/VGV comissioning",7112,"CCGTD1_IPS",TT_Task,"58536",-,-,-,100,TK_Complete,31/08/2019,05/11/2019,05/09/2019,08/11/2019,"","","CCOM3100 FS,CCOM3100 FF,CCOM3380 FS","CCOM3100,CCOM3100,CCOM3380",213,259,214,260,49,60,49,60,73,,"CCGT D1_Integrated Programme Schedule;(OEM) Commissioning;COLD COMMISSIONING;Mechanical;Turboset Turning Gear;Gas Turbine on Turning Gear;10MBA Gas Turbine Sysstem",0,2,0.0,0.0012207528,0.0,5,1.0,0.0000812387,0.0,0.0061538462,0.0,0.0031331593,0.0,0.0112107623,1.0,0.0
1.2.2.7.4.3.2-3,CCOM3380,"IGV/VGV",7112,"CCGTD1_IPS",TT_Task,"58536",-,-,-,100,TK_Complete,02/07/2020,13/11/2019,07/07/2020,16/11/2019,"CCOM2780 FS","CCOM2780","CCOM3390 FS","CCOM3390",257,260,257,261,60,60,60,60,92,,"CCGT D1_Integrated Programme Schedule;(OEM) Commissioning;COLD COMMISSIONING;Mechanical;Turboset Turning Gear;Gas Turbine on Turning Gear;10MBA Gas Turbine Sysstem",1,1,0.0000000414,0.001017294,0.0002034588,5,1.0,0.0001503957,0.0068493151,0.0030769231,0.0000625,0.0026109661,0.0006435006,0.0112107623,1.0,0.0283369572
1.2.2.7.4.3.2-4,CCOM3390,"IGV/VGV",7112,"CCGTD1_IPS",TT_Task,"58536",-,-,-,100,TK_Complete,02/07/2020,20/11/2019,07/07/2020,30/11/2019,"CCOM3380 FS","CCOM3380","CCOM3100 FS","CCOM3100",257,261,257,263,60,61,60,61,92,,"CCGT D1_Integrated Programme Schedule;(OEM) Commissioning;COLD COMMISSIONING;Mechanical;Turboset Turning Gear;Gas Turbine on Turning Gear;10MBA Gas Turbine Sysstem",1,1,0.0000001656,0.0008138352,0.0004069176,5,0.6,0.000209244,0.0068493151,0.0030769231,0.00025,0.0020887728,0.0012870013,0.0112107623,0.6,0.0524499399
1.2.2.7.4.3.2-5,CCOM3400,"Commissioning of HCO system",7112,"CCGTD1_IPS",TT_Task,"58536",-,-,-,100,TK_Complete,02/07/2020,09/12/2019,07/07/2020,21/12/2019,"CCOM3100 FS","CCOM3100","CCOM4710 FS","CCOM4710",257,264,257,266,60,61,60,62,92,,"CCGT D1_Integrated Programme Schedule;(OEM) Commissioning;COLD COMMISSIONING;Mechanical;Turboset Turning Gear;Gas Turbine on Turning Gear;10MBA Gas Turbine Sysstem",1,1,0.0000130836,0.0004069176,0.0321464903,5,0.0,0.0001503957,0.0068493151,0.0030769231,0.01975,0.0010443864,0.1016731017,0.0112107623,0.0,0.0283369572
1.2.2.7.4.3.2-6,CCOM4710,"Commissioning of HCO system - system restored",7112,"CCGTD1_IPS",TT_Task,"58536",-,-,-,100,TK_Complete,02/07/2020,06/01/2020,07/07/2020,09/01/2020,"CCOM3400 FS","CCOM3400","CCOM4720 SS","CCOM4720",257,268,257,268,60,62,60,62,95,,"CCGT D1_Integrated Programme Schedule;(OEM) Commissioning;COLD COMMISSIONING;Mechanical;Turboset Turning Gear;Gas Turbine on Turning Gear;10MBA Gas Turbine Sysstem",1,1,0.0000065832,0.0002034588,0.0323499491,5,1.0,0.000209244,0.0068493151,0.0030769231,0.0099375,0.0005221932,0.1023166023,0.0112107623,1.0,0.0524499399
1.2.2.7.4.3.2-7,CCOM4720,"GT protection testing",7112,"CCGTD1_IPS",TT_Task,"58536",-,-,-,100,TK_Complete,02/07/2020,06/01/2020,07/07/2020,08/01/2020,"CCOM4710 SS","CCOM4710","","",257,268,257,268,60,62,60,62,95,,"CCGT D1_Integrated Programme Schedule;(OEM) Commissioning;COLD COMMISSIONING;Mechanical;Turboset Turning Gear;Gas Turbine on Turning Gear;10MBA Gas Turbine Sysstem",1,0,0.0,0.0,0.0325534079,5,1.0,0.0002593786,0.0068493151,0.0,0.0,0.0,0.102960103,0.0112107623,1.0,0.0729924654
1.2.2.7.4.3.3,58535,"10MBV GT Lube Oil / Lifting Oil System",7112,"CCGTD1_IPS",WBS,"58532",,,,100,Complete,31/08/2019,05/09/2019,07/07/2020,21/12/2019,,,,,213,250,257,266,49,58,60,62,,,"CCGT D1_Integrated Programme Schedule;(OEM) Commissioning;COLD COMMISSIONING;Mechanical;Turboset Turning Gear;Gas Turbine on Turning Gear"
1.2.2.7.4.3.3-1,CCOM1470,"Handover of TOP 10MBV",7112,"CCGTD1_IPS",TT_FinMile,"58535",-,-,-,100,TK_Complete,31/08/2019,06/09/2019,31/08/2019,06/09/2019,"TOP1250 FS,CCOM1440 FS","TOP1250,CCOM1440","CCOM1640 FS","CCOM1640",213,251,213,251,49,58,49,58,71,,"CCGT D1_Integrated Programme Schedule;(OEM) Commissioning;COLD COMMISSIONING;Mechanical;Turboset Turning Gear;Gas Turbine on Turning Gear;10MBV GT Lube Oil / Lifting Oil System",2,1,0.000006459,0.0008138352,0.0079348932,0,1.0,0.0000812387,0.0136986301,0.0030769231,0.00975,0.0020887728,0.0250965251,0.0,1.0,0.0
1.2.2.7.4.3.3-2,CCOM1440,"System setup for lube oil flushing",7112,"CCGTD1_IPS",TT_Task,"58535",-,-,-,100,TK_Complete,31/08/2019,05/09/2019,05/09/2019,09/09/2019,"","","CCOM1470 FS","CCOM1470",213,250,214,251,49,58,49,58,71,,"CCGT D1_Integrated Programme Schedule;(OEM) Commissioning;COLD COMMISSIONING;Mechanical;Turboset Turning Gear;Gas Turbine on Turning Gear;10MBV GT Lube Oil / Lifting Oil System",0,1,0.0,0.001017294,0.0,5,1.0,0.0000812387,0.0,0.0030769231,0.0,0.0026109661,0.0,0.0112107623,1.0,0.0
1.2.2.7.4.3.3-3,CCOM1640,"Operation of lifting oil system to support construction works",7112,"CCGTD1_IPS",TT_Task,"58535",-,-,-,100,TK_Complete,31/08/2019,16/09/2019,05/09/2019,19/09/2019,"CCOM1470 FS","CCOM1470","CCOM3410 FS","CCOM3410",213,252,214,252,49,58,49,59,71,,"CCGT D1_Integrated Programme Schedule;(OEM) Commissioning;COLD COMMISSIONING;Mechanical;Turboset Turning Gear;Gas Turbine on Turning Gear;10MBV GT Lube Oil / Lifting Oil System",1,1,0.0000049685,0.0006103764,0.008138352,5,1.0,0.0001503957,0.0068493151,0.0030769231,0.0075,0.0015665796,0.0257400257,0.0112107623,1.0,0.0283369572
1.2.2.7.4.3.3-4,CCOM3410,"Commissioning of turning gear system",7112,"CCGTD1_IPS",TT_Task,"58535",-,-,-,100,TK_Complete,02/07/2020,21/11/2019,07/07/2020,14/12/2019,"CCOM1640 FS","CCOM1640","CCOM3420 FS","CCOM3420",257,261,257,265,60,61,60,61,92,,"CCGT D1_Integrated Programme Schedule;(OEM) Commissioning;COLD COMMISSIONING;Mechanical;Turboset Turning Gear;Gas Turbine on Turning Gear;10MBV GT Lube Oil / Lifting Oil System",1,1,0.0000033951,0.0004069176,0.0083418108,5,0.0,0.000209244,0.0068493151,0.0030769231,0.005125,0.0010443864,0.0263835264,0.0112107623,0.0,0.0524499399
1.2.2.7.4.3.3-5,CCOM3420,"First GT turning Gear",7112,"CCGTD1_IPS",TT_Task,"58535",-,-,-,100,TK_Complete,02/07/2020,23/11/2019,07/07/2020,23/11/2019,"CCOM3410 FS","CCOM3410","CCOM3430 FS","CCOM3430",257,262,257,262,60,61,60,61,92,,"CCGT D1_Integrated Programme Schedule;(OEM) Commissioning;COLD COMMISSIONING;Mechanical;Turboset Turning Gear;Gas Turbine on Turning Gear;10MBV GT Lube Oil / Lifting Oil System",1,1,0.000001739,0.0002034588,0.0085452696,5,1.0,0.0002593786,0.0068493151,0.0030769231,0.002625,0.0005221932,0.027027027,0.0112107623,1.0,0.0729924654
1.2.2.7.4.3.3-6,CCOM3430,"System in operation for air leak test ( if required)",7112,"CCGTD1_IPS",TT_Task,"58535",-,-,-,100,TK_Complete,02/07/2020,16/12/2019,07/07/2020,21/12/2019,"CCOM3420 FS","CCOM3420","","",257,265,257,266,60,61,60,62,92,,"CCGT D1_Integrated Programme Schedule;(OEM) Commissioning;COLD COMMISSIONING;Mechanical;Turboset Turning Gear;Gas Turbine on Turning Gear;10MBV GT Lube Oil / Lifting Oil System",1,0,0.0,0.0,0.0087487284,5,1.0,0.0003021254,0.0068493151,0.0,0.0,0.0,0.0276705277,0.0112107623,1.0,0.0905078876
1.2.2.7.4.3.4,58534,"10MBX GT Hydraulic Oil System",7112,"CCGTD1_IPS",WBS,"58532",,,,100,Complete,26/08/2019,26/08/2019,28/10/2019,08/11/2019,,,,,212,249,221,260,49,58,51,60,,,"CCGT D1_Integrated Programme Schedule;(OEM) Commissioning;COLD COMMISSIONING;Mechanical;Turboset Turning Gear;Gas Turbine on Turning Gear"
1.2.2.7.4.3.4-1,CCOM2560,"Handover of TOP 10MBX",7112,"CCGTD1_IPS",TT_FinMile,"58534",-,-,-,100,TK_Complete,28/10/2019,28/10/2019,28/10/2019,28/10/2019,"TOP1270 FS,CCOM2360 FS","TOP1270,CCOM2360","CCOM2790 FS","CCOM2790",221,258,221,258,51,60,51,60,80,,"CCGT D1_Integrated Programme Schedule;(OEM) Commissioning;COLD COMMISSIONING;Mechanical;Turboset Turning Gear;Gas Turbine on Turning Gear;10MBX GT Hydraulic Oil System",2,1,0.0000052997,0.0002034588,0.0260427263,0,1.0,0.0000812387,0.0136986301,0.0030769231,0.008,0.0005221932,0.0823680824,0.0,1.0,0.0
1.2.2.7.4.3.4-2,CCOM1260,"Energisation of motor & loop checks to support construction flushing",7112,"CCGTD1_IPS",TT_Task,"58534",-,-,-,100,TK_Complete,26/08/2019,26/08/2019,30/08/2019,27/08/2019,"","","CCOM2360 FS","CCOM2360",212,249,213,249,49,58,49,58,70,,"CCGT D1_Integrated Programme Schedule;(OEM) Commissioning;COLD COMMISSIONING;Mechanical;Turboset Turning Gear;Gas Turbine on Turning Gear;10MBX GT Hydraulic Oil System",0,1,0.0,0.0006103764,0.0,4,1.0,0.0000812387,0.0,0.0030769231,0.0,0.0015665796,0.0,0.0089686099,1.0,0.0
1.2.2.7.4.3.4-3,CCOM2360,"Cold commissioning in preparation for first pressurization",7112,"CCGTD1_IPS",TT_Task,"58534",-,-,-,100,TK_Complete,31/08/2019,21/10/2019,05/09/2019,29/10/2019,"CCOM1260 FS","CCOM1260","CCOM2560 FS","CCOM2560",213,257,214,258,49,60,49,60,73,,"CCGT D1_Integrated Programme Schedule;(OEM) Commissioning;COLD COMMISSIONING;Mechanical;Turboset Turning Gear;Gas Turbine on Turning Gear;10MBX GT Hydraulic Oil System",1,1,0.0000000828,0.0004069176,0.0002034588,5,0.4,0.0001503957,0.0068493151,0.0030769231,0.000125,0.0010443864,0.0006435006,0.0112107623,0.4,0.0283369572
1.2.2.7.4.3.4-4,CCOM2790,"Initial pressurization of system, valve commissioning",7112,"CCGTD1_IPS",TT_Task,"58534",-,-,-,100,TK_Complete,31/08/2019,05/11/2019,05/09/2019,08/11/2019,"CCOM2560 FS","CCOM2560","","",213,259,214,260,49,60,49,60,73,,"CCGT D1_Integrated Programme Schedule;(OEM) Commissioning;COLD COMMISSIONING;Mechanical;Turboset Turning Gear;Gas Turbine on Turning Gear;10MBX GT Hydraulic Oil System",1,0,0.0,0.0,0.0262461851,5,1.0,0.0001503957,0.0068493151,0.0,0.0,0.0,0.083011583,0.0112107623,1.0,0.0283369572
1.2.2.7.4.3.5,58533,"10CP-GT Interface Panels ET200 in Function Area Gas Turbine",7112,"CCGTD1_IPS",WBS,"58532",,,,100,Complete,08/08/2019,08/08/2019,07/07/2020,21/12/2019,,,,,210,246,257,266,49,57,60,62,,,"CCGT D1_Integrated Programme Schedule;(OEM) Commissioning;COLD COMMISSIONING;Mechanical;Turboset Turning Gear;Gas Turbine on Turning Gear"
1.2.2.7.4.3.5-1,CCOM1210,"Loading of APs for GT",7112,"CCGTD1_IPS",TT_Task,"58533",-,-,-,100,TK_Complete,20/08/2019,20/08/2019,24/08/2019,22/08/2019,"CCOM1090 FS","CCOM1090","CCOM1340 FS","CCOM1340",211,248,212,248,49,58,49,58,70,,"CCGT D1_Integrated Programme Schedule;(OEM) Commissioning;COLD COMMISSIONING;Mechanical;Turboset Turning Gear;Gas Turbine on Turning Gear;10CP-GT Interface Panels ET200 in Function Area Gas Turbine",1,1,0.0000072457,0.001017294,0.007121058,4,1.0,0.0001503957,0.0068493151,0.0030769231,0.0109375,0.0026109661,0.0225225225,0.0089686099,1.0,0.0283369572
1.2.2.7.4.3.5-2,CCOM1090,"Handover of TOP 10CP-GT",7112,"CCGTD1_IPS",TT_FinMile,"58533",-,-,-,100,TK_Complete,08/08/2019,08/08/2019,08/08/2019,08/08/2019,"TOP1640 FS","TOP1640","CCOM1210 FS","CCOM1210",210,246,210,246,49,57,49,57,69,,"CCGT D1_Integrated Programme Schedule;(OEM) Commissioning;COLD COMMISSIONING;Mechanical;Turboset Turning Gear;Gas Turbine on Turning Gear;10CP-GT Interface Panels ET200 in Function Area Gas Turbine",1,1,0.0000084464,0.0012207528,0.0069175992,0,1.0,0.0000812387,0.0068493151,0.0030769231,0.01275,0.0031331593,0.0218790219,0.0,1.0,0.0
1.2.2.7.4.3.5-3,CCOM1340,"Cold Commissioning",7112,"CCGTD1_IPS",TT_Task,"58533",-,-,-,100,TK_Complete,31/08/2019,03/09/2019,05/09/2019,02/10/2019,"CCOM1210 FS","CCOM1210","CCOM1920 FS","CCOM1920",213,250,214,254,49,58,49,59,71,,"CCGT D1_Integrated Programme Schedule;(OEM) Commissioning;COLD COMMISSIONING;Mechanical;Turboset Turning Gear;Gas Turbine on Turning Gear;10CP-GT Interface Panels ET200 in Function Area Gas Turbine",1,1,0.0000059622,0.0008138352,0.0073245168,5,0.0,0.000209244,0.0068493151,0.0030769231,0.009,0.0020887728,0.0231660232,0.0112107623,0.0,0.0524499399
1.2.2.7.4.3.5-4,CCOM1920,"Engineering updates for GT system",7112,"CCGTD1_IPS",TT_Task,"58533",-,-,-,100,TK_Complete,31/08/2019,03/10/2019,05/09/2019,04/10/2019,"CCOM1340 FS","CCOM1340","CCOM3290 FS","CCOM3290",213,254,214,255,49,59,49,59,72,,"CCGT D1_Integrated Programme Schedule;(OEM) Commissioning;COLD COMMISSIONING;Mechanical;Turboset Turning Gear;Gas Turbine on Turning Gear;10CP-GT Interface Panels ET200 in Function Area Gas Turbine",1,1,0.0000045958,0.0006103764,0.0075279756,5,1.0,0.0002593786,0.0068493151,0.0030769231,0.0069375,0.0015665796,0.0238095238,0.0112107623,1.0,0.0729924654
1.2.2.7.4.3.5-5,CCOM3290,"cold commissioning (MBP/MBA)",7112,"CCGTD1_IPS",TT_Task,"58533",-,-,-,100,TK_Complete,02/07/2020,18/11/2019,07/07/2020,23/11/2019,"CCOM1920 FS","CCOM1920","CCOM3310 FS","CCOM3310",257,261,257,262,60,61,60,61,92,,"CCGT D1_Integrated Programme Schedule;(OEM) Commissioning;COLD COMMISSIONING;Mechanical;Turboset Turning Gear;Gas Turbine on Turning Gear;10CP-GT Interface Panels ET200 in Function Area Gas Turbine",1,1,0.0000031467,0.0004069176,0.0077314344,5,1.0,0.0003021254,0.0068493151,0.0030769231,0.00475,0.0010443864,0.0244530245,0.0112107623,1.0,0.0905078876
1.2.2.7.4.3.5-6,CCOM3310,"cold commissioning (VGV/IGV)",7112,"CCGTD1_IPS",TT_Task,"58533",-,-,-,100,TK_Complete,02/07/2020,25/11/2019,07/07/2020,30/11/2019,"CCOM3290 FS","CCOM3290","CCOM3320 FS","CCOM3320",257,262,257,263,60,61,60,61,92,,"CCGT D1_Integrated Programme Schedule;(OEM) Commissioning;COLD COMMISSIONING;Mechanical;Turboset Turning Gear;Gas Turbine on Turning Gear;10CP-GT Interface Panels ET200 in Function Area Gas Turbine",1,1,0.0000016148,0.0002034588,0.0079348932,5,1.0,0.000338598,0.0068493151,0.0030769231,0.0024375,0.0005221932,0.0250965251,0.0112107623,1.0,0.1054524737
1.2.2.7.4.3.5-7,CCOM3320,"cold commissioning MBA50",7112,"CCGTD1_IPS",TT_Task,"58533",-,-,-,100,TK_Complete,02/07/2020,09/12/2019,07/07/2020,21/12/2019,"CCOM3310 FS","CCOM3310","","",257,264,257,266,60,61,60,62,92,,"CCGT D1_Integrated Programme Schedule;(OEM) Commissioning;COLD COMMISSIONING;Mechanical;Turboset Turning Gear;Gas Turbine on Turning Gear;10CP-GT Interface Panels ET200 in Function Area Gas Turbine",1,0,0.0,0.0,0.008138352,5,0.2,0.0003696143,0.0068493151,0.0,0.0,0.0,0.0257400257,0.0112107623,0.2,0.1181613545
1.2.2.7.4.4,58527,"Steam Turbine on Turning Gear",7112,"CCGTD1_IPS",WBS,"58526",,,,100,Complete,15/08/2019,15/08/2019,07/07/2020,27/03/2020,,,,,211,247,257,280,49,57,60,65,,,"CCGT D1_Integrated Programme Schedule;(OEM) Commissioning;COLD COMMISSIONING;Mechanical;Turboset Turning Gear"
1.2.2.7.4.4.1,58531,"10MAW ST Seal Steam System",7112,"CCGTD1_IPS",WBS,"58527",,,,100,Complete,31/08/2019,26/10/2019,07/07/2020,18/01/2020,,,,,213,258,257,270,49,60,60,63,,,"CCGT D1_Integrated Programme Schedule;(OEM) Commissioning;COLD COMMISSIONING;Mechanical;Turboset Turning Gear;Steam Turbine on Turning Gear"
1.2.2.7.4.4.1-1,CCOM2480,"Handover of TOP 10MAW",7112,"CCGTD1_IPS",TT_FinMile,"58531",-,-,-,100,TK_Complete,31/08/2019,26/10/2019,31/08/2019,26/10/2019,"TOP1170 FS","TOP1170","CCOM3030 FS","CCOM3030",213,258,213,258,49,60,49,60,74,,"CCGT D1_Integrated Programme Schedule;(OEM) Commissioning;COLD COMMISSIONING;Mechanical;Turboset Turning Gear;Steam Turbine on Turning Gear;10MAW ST Seal Steam System",1,1,0.0000031053,0.0006103764,0.00508647,0,1.0,0.0000812387,0.0068493151,0.0030769231,0.0046875,0.0015665796,0.0160875161,0.0,1.0,0.0
1.2.2.7.4.4.1-2,CCOM3030,"Pneumatic valve commissioning",7112,"CCGTD1_IPS",TT_Task,"58531",-,-,-,100,TK_Complete,31/08/2019,14/11/2019,05/09/2019,18/11/2019,"CCOM2480 FS","CCOM2480","CCOM3360 FS","CCOM3360",213,260,214,261,49,60,49,61,74,,"CCGT D1_Integrated Programme Schedule;(OEM) Commissioning;COLD COMMISSIONING;Mechanical;Turboset Turning Gear;Steam Turbine on Turning Gear;10MAW ST Seal Steam System",1,1,0.000002153,0.0004069176,0.0052899288,5,1.0,0.0001503957,0.0068493151,0.0030769231,0.00325,0.0010443864,0.0167310167,0.0112107623,1.0,0.0283369572
1.2.2.7.4.4.1-3,CCOM3360,"Valve commissioning",7112,"CCGTD1_IPS",TT_Task,"58531",-,-,-,100,TK_Complete,02/07/2020,18/11/2019,07/07/2020,30/11/2019,"CCOM3030 FS","CCOM3030","CCOM4980 FS","CCOM4980",257,261,257,263,60,61,60,61,92,,"CCGT D1_Integrated Programme Schedule;(OEM) Commissioning;COLD COMMISSIONING;Mechanical;Turboset Turning Gear;Steam Turbine on Turning Gear;10MAW ST Seal Steam System",1,1,0.0000011179,0.0002034588,0.0054933876,5,0.2,0.000209244,0.0068493151,0.0030769231,0.0016875,0.0005221932,0.0173745174,0.0112107623,0.2,0.0524499399
1.2.2.7.4.4.1-4,CCOM4980,"Seal steam commissioning",7112,"CCGTD1_IPS",TT_Task,"58531",-,-,-,100,TK_Complete,02/07/2020,16/01/2020,07/07/2020,18/01/2020,"CCOM3360 FS","CCOM3360","","",257,269,257,270,60,62,60,63,95,,"CCGT D1_Integrated Programme Schedule;(OEM) Commissioning;COLD COMMISSIONING;Mechanical;Turboset Turning Gear;Steam Turbine on Turning Gear;10MAW ST Seal Steam System",1,0,0.0,0.0,0.0056968464,5,1.0,0.0002593786,0.0068493151,0.0,0.0,0.0,0.018018018,0.0112107623,1.0,0.0729924654
1.2.2.7.4.4.2,58530,"10MAD ST Bearing System",7112,"CCGTD1_IPS",WBS,"58527",,,,100,Complete,31/08/2019,05/09/2019,05/09/2019,10/09/2019,,,,,213,250,214,251,49,58,49,58,,,"CCGT D1_Integrated Programme Schedule;(OEM) Commissioning;COLD COMMISSIONING;Mechanical;Turboset Turning Gear;Steam Turbine on Turning Gear"
1.2.2.7.4.4.2-1,CCOM1460,"Handover of TOP 10MAD",7112,"CCGTD1_IPS",TT_FinMile,"58530",-,-,-,100,TK_Complete,31/08/2019,06/09/2019,31/08/2019,06/09/2019,"TOP1110 FS,CCOM1430 FS","TOP1110,CCOM1430","","",213,251,213,251,49,58,49,58,71,,"CCGT D1_Integrated Programme Schedule;(OEM) Commissioning;COLD COMMISSIONING;Mechanical;Turboset Turning Gear;Steam Turbine on Turning Gear;10MAD ST Bearing System",2,0,0.0,0.0,0.0254323499,0,1.0,0.0000812387,0.0136986301,0.0,0.0,0.0,0.0804375804,0.0,1.0,0.0
1.2.2.7.4.4.2-2,CCOM1430,"System setup for lube oil flushing",7112,"CCGTD1_IPS",TT_Task,"58530",-,-,-,100,TK_Complete,31/08/2019,05/09/2019,05/09/2019,10/09/2019,"","","CCOM1460 FS","CCOM1460",213,250,214,251,49,58,49,58,71,,"CCGT D1_Integrated Programme Schedule;(OEM) Commissioning;COLD COMMISSIONING;Mechanical;Turboset Turning Gear;Steam Turbine on Turning Gear;10MAD ST Bearing System",0,1,0.0,0.0002034588,0.0,5,1.0,0.0000812387,0.0,0.0030769231,0.0,0.0005221932,0.0,0.0112107623,1.0,0.0
1.2.2.7.4.4.3,58529,"10MAV ST Lube and Lifting Oil System",7112,"CCGTD1_IPS",WBS,"58527",,,,100,Complete,16/08/2019,16/08/2019,07/07/2020,27/03/2020,,,,,211,248,257,280,49,57,60,65,,,"CCGT D1_Integrated Programme Schedule;(OEM) Commissioning;COLD COMMISSIONING;Mechanical;Turboset Turning Gear;Steam Turbine on Turning Gear"
1.2.2.7.4.4.3-1,CCOM1240,"Preparation for Loop checking",7112,"CCGTD1_IPS",TT_Task,"58529",-,-,-,100,TK_Complete,21/08/2019,21/08/2019,26/08/2019,24/08/2019,"CCOM1130 FS","CCOM1130","CCOM1270 FS","CCOM1270",212,248,212,249,49,58,49,58,70,,"CCGT D1_Integrated Programme Schedule;(OEM) Commissioning;COLD COMMISSIONING;Mechanical;Turboset Turning Gear;Steam Turbine on Turning Gear;10MAV ST Lube and Lifting Oil System",1,1,0.0000009937,0.0048830112,0.0002034588,5,1.0,0.0001503957,0.0068493151,0.0030769231,0.0015,0.0125326371,0.0006435006,0.0112107623,1.0,0.0283369572
1.2.2.7.4.4.3-2,CCOM1130,"Handover of TOP 10MAV-01",7112,"CCGTD1_IPS",TT_FinMile,"58529",-,-,-,100,TK_Complete,16/08/2019,16/08/2019,16/08/2019,16/08/2019,"","","CCOM1240 FS","CCOM1240",211,248,211,248,49,57,49,57,70,,"CCGT D1_Integrated Programme Schedule;(OEM) Commissioning;COLD COMMISSIONING;Mechanical;Turboset Turning Gear;Steam Turbine on Turning Gear;10MAV ST Lube and Lifting Oil System",0,1,0.0,0.00508647,0.0,0,1.0,0.0000812387,0.0,0.0030769231,0.0,0.0130548303,0.0,0.0,1.0,0.0
1.2.2.7.4.4.3-3,CCOM1450,"Handover of TOP 10MAV-02",7112,"CCGTD1_IPS",TT_FinMile,"58529",-,-,-,100,TK_Complete,05/09/2019,05/09/2019,05/09/2019,05/09/2019,"","","CCOM1490 FS","CCOM1490",214,250,214,250,49,58,49,58,75,,"CCGT D1_Integrated Programme Schedule;(OEM) Commissioning;COLD COMMISSIONING;Mechanical;Turboset Turning Gear;Steam Turbine on Turning Gear;10MAV ST Lube and Lifting Oil System",0,1,0.0,0.0044760936,0.0,0,1.0,0.0000812387,0.0,0.0030769231,0.0,0.0114882507,0.0,0.0,1.0,0.0
1.2.2.7.4.4.3-4,CCOM1270,"Loop Checking",7112,"CCGTD1_IPS",TT_Task,"58529",-,-,-,100,TK_Complete,26/08/2019,26/08/2019,30/08/2019,05/09/2019,"CCOM1240 FS","CCOM1240","CCOM1380 FS","CCOM1380",212,249,213,250,49,58,49,58,70,,"CCGT D1_Integrated Programme Schedule;(OEM) Commissioning;COLD COMMISSIONING;Mechanical;Turboset Turning Gear;Steam Turbine on Turning Gear;10MAV ST Lube and Lifting Oil System",1,1,0.0000019046,0.0046795524,0.0004069176,4,0.4,0.000209244,0.0068493151,0.0030769231,0.002875,0.0120104439,0.0012870013,0.0089686099,0.4,0.0524499399
1.2.2.7.4.4.3-5,CCOM1380,"Preparation for flushing",7112,"CCGTD1_IPS",TT_Task,"58529",-,-,-,100,TK_Complete,03/09/2019,03/09/2019,07/09/2019,05/09/2019,"CCOM1270 FS","CCOM1270","CCOM1490 FS","CCOM1490",213,250,214,250,49,58,50,58,75,,"CCGT D1_Integrated Programme Schedule;(OEM) Commissioning;COLD COMMISSIONING;Mechanical;Turboset Turning Gear;Steam Turbine on Turning Gear;10MAV ST Lube and Lifting Oil System",1,1,0.0000027327,0.0044760936,0.0006103764,4,1.0,0.0002593786,0.0068493151,0.0030769231,0.004125,0.0114882507,0.0019305019,0.0089686099,1.0,0.0729924654
1.2.2.7.4.4.3-6,CCOM1490,"Setup for Commissioning Oil Flushing",7112,"CCGTD1_IPS",TT_Task,"58529",-,-,-,100,TK_Complete,31/08/2019,06/09/2019,05/09/2019,07/09/2019,"CCOM1380 FS,CCOM1450 FS","CCOM1380,CCOM1450","CCOM1530 FS","CCOM1530",213,251,214,251,49,58,49,58,71,,"CCGT D1_Integrated Programme Schedule;(OEM) Commissioning;COLD COMMISSIONING;Mechanical;Turboset Turning Gear;Steam Turbine on Turning Gear;10MAV ST Lube and Lifting Oil System",2,1,0.0000043474,0.0042726348,0.001017294,5,1.0,0.0003712824,0.0136986301,0.0030769231,0.0065625,0.0109660574,0.0032175032,0.0112107623,1.0,0.1188448448
1.2.2.7.4.4.3-7,CCOM1530,"Commissioning Oil flushing",7112,"CCGTD1_IPS",TT_Task,"58529",-,-,-,100,TK_Complete,31/08/2019,10/09/2019,05/09/2019,13/09/2019,"CCOM1490 FS","CCOM1490","CCOM1580 FS","CCOM1580",213,251,214,252,49,58,49,58,71,,"CCGT D1_Integrated Programme Schedule;(OEM) Commissioning;COLD COMMISSIONING;Mechanical;Turboset Turning Gear;Steam Turbine on Turning Gear;10MAV ST Lube and Lifting Oil System",1,1,0.0000049685,0.004069176,0.0012207528,5,1.0,0.0003974463,0.0068493151,0.0030769231,0.0075,0.0104438642,0.0038610039,0.0112107623,1.0,0.1295654564
1.2.2.7.4.4.3-8,CCOM1580,"Connection of DC Lube Oil Pump for flushing",7112,"CCGTD1_IPS",TT_Task,"58529",-,-,-,100,TK_Complete,31/08/2019,12/09/2019,05/09/2019,12/09/2019,"CCOM1530 FS","CCOM1530","CCOM1620 FS","CCOM1620",213,251,214,251,49,58,49,58,71,,"CCGT D1_Integrated Programme Schedule;(OEM) Commissioning;COLD COMMISSIONING;Mechanical;Turboset Turning Gear;Steam Turbine on Turning Gear;10MAV ST Lube and Lifting Oil System",1,1,0.0000055067,0.0038657172,0.0014242116,5,1.0,0.0004197488,0.0068493151,0.0030769231,0.0083125,0.009921671,0.0045045045,0.0112107623,1.0,0.13870388
1.2.2.7.4.4.3-9,CCOM1620,"Electrical commissioning of DC oil pump",7112,"CCGTD1_IPS",TT_Task,"58529",-,-,-,100,TK_Complete,31/08/2019,13/09/2019,05/09/2019,17/09/2019,"CCOM1580 FS","CCOM1580","CCOM1820 FS","CCOM1820",213,252,214,252,49,58,49,58,71,,"CCGT D1_Integrated Programme Schedule;(OEM) Commissioning;COLD COMMISSIONING;Mechanical;Turboset Turning Gear;Steam Turbine on Turning Gear;10MAV ST Lube and Lifting Oil System",1,1,0.0000059622,0.0036622584,0.0016276704,5,1.0,0.0004387538,0.0068493151,0.0030769231,0.009,0.0093994778,0.0051480051,0.0112107623,1.0,0.1464911096
1.2.2.7.4.4.3-10,CCOM1820,"Preparation for installation of new feeder for MAV24AP001",7112,"CCGTD1_IPS",TT_Task,"58529",-,-,-,100,TK_Complete,31/08/2019,30/09/2019,05/09/2019,30/09/2019,"CCOM1620 FS","CCOM1620","CCOM1870 FS","CCOM1870",213,254,214,254,49,59,49,59,72,,"CCGT D1_Integrated Programme Schedule;(OEM) Commissioning;COLD COMMISSIONING;Mechanical;Turboset Turning Gear;Steam Turbine on Turning Gear;10MAV ST Lube and Lifting Oil System",1,1,0.0000063348,0.0034587996,0.0018311292,5,1.0,0.0004550572,0.0068493151,0.0030769231,0.0095625,0.0088772846,0.0057915058,0.0112107623,1.0,0.1531713997
1.2.2.7.4.4.3-11,CCOM1870,"Removal of current feeder & Preparation for installation of new feeder MAV24AP001",7112,"CCGTD1_IPS",TT_Task,"58529",-,-,-,100,TK_Complete,31/08/2019,02/10/2019,05/09/2019,04/10/2019,"CCOM1820 FS","CCOM1820","CCOM1980 FS","CCOM1980",213,254,214,255,49,59,49,59,72,,"CCGT D1_Integrated Programme Schedule;(OEM) Commissioning;COLD COMMISSIONING;Mechanical;Turboset Turning Gear;Steam Turbine on Turning Gear;10MAV ST Lube and Lifting Oil System",1,1,0.0000066246,0.0032553408,0.002034588,5,1.0,0.0004694636,0.0068493151,0.0030769231,0.01,0.0083550914,0.0064350064,0.0112107623,1.0,0.1590743939
1.2.2.7.4.4.3-12,CCOM1980,"Finalisation of Cabling Works for new feeder for DC Pump",7112,"CCGTD1_IPS",TT_Task,"58529",-,-,-,100,TK_Complete,31/08/2019,09/10/2019,05/09/2019,12/10/2019,"CCOM1870 FS","CCOM1870","CCOM2160 FS","CCOM2160",213,255,214,256,49,59,49,59,72,,"CCGT D1_Integrated Programme Schedule;(OEM) Commissioning;COLD COMMISSIONING;Mechanical;Turboset Turning Gear;Steam Turbine on Turning Gear;10MAV ST Lube and Lifting Oil System",1,1,0.0000068316,0.003051882,0.0022380468,5,1.0,0.0004825562,0.0068493151,0.0030769231,0.0103125,0.0078328982,0.0070785071,0.0112107623,1.0,0.1644390967
1.2.2.7.4.4.3-13,CCOM2160,"Test Run of MAV24AP001 after feeder exchange",7112,"CCGTD1_IPS",TT_Task,"58529",-,-,-,100,TK_Complete,31/08/2019,14/10/2019,05/09/2019,14/10/2019,"CCOM1980 FS","CCOM1980","CCOM2200 FS","CCOM2200",213,256,214,256,49,59,49,59,72,,"CCGT D1_Integrated Programme Schedule;(OEM) Commissioning;COLD COMMISSIONING;Mechanical;Turboset Turning Gear;Steam Turbine on Turning Gear;10MAV ST Lube and Lifting Oil System",1,1,0.0000069559,0.0028484232,0.0024415056,5,1.0,0.0005127817,0.0068493151,0.0030769231,0.0105,0.007310705,0.0077220077,0.0112107623,1.0,0.1768239324
1.2.2.7.4.4.3-14,CCOM2200,"Preparation works for draining oil from main lube oil tank (construction activity)",7112,"CCGTD1_IPS",TT_Task,"58529",-,-,-,100,TK_Complete,31/08/2019,15/10/2019,05/09/2019,15/10/2019,"CCOM2160 FS","CCOM2160","CCOM2250 FS","CCOM2250",213,256,214,256,49,59,49,59,72,,"CCGT D1_Integrated Programme Schedule;(OEM) Commissioning;COLD COMMISSIONING;Mechanical;Turboset Turning Gear;Steam Turbine on Turning Gear;10MAV ST Lube and Lifting Oil System",1,1,0.0000069973,0.0026449644,0.0026449644,5,1.0,0.0005100668,0.0068493151,0.0030769231,0.0105625,0.0067885117,0.0083655084,0.0112107623,1.0,0.1757115056
1.2.2.7.4.4.3-15,CCOM2250,"Continuation of oil draining from tank (construction)",7112,"CCGTD1_IPS",TT_Task,"58529",-,-,-,100,TK_Complete,31/08/2019,16/10/2019,05/09/2019,18/10/2019,"CCOM2200 FS","CCOM2200","CCOM2370 FS","CCOM2370",213,256,214,257,49,59,49,59,73,,"CCGT D1_Integrated Programme Schedule;(OEM) Commissioning;COLD COMMISSIONING;Mechanical;Turboset Turning Gear;Steam Turbine on Turning Gear;10MAV ST Lube and Lifting Oil System",1,1,0.0000069559,0.0024415056,0.0028484232,5,1.0,0.0005079205,0.0068493151,0.0030769231,0.0105,0.0062663185,0.009009009,0.0112107623,1.0,0.174832057
1.2.2.7.4.4.3-16,CCOM2370,"Preparation for inspection/cleaning works (Construction)",7112,"CCGTD1_IPS",TT_Task,"58529",-,-,-,100,TK_Complete,21/10/2019,21/10/2019,25/10/2019,22/10/2019,"CCOM2250 FS","CCOM2250","CCOM2400 FS","CCOM2400",220,257,221,257,51,60,51,60,80,,"CCGT D1_Integrated Programme Schedule;(OEM) Commissioning;COLD COMMISSIONING;Mechanical;Turboset Turning Gear;Steam Turbine on Turning Gear;10MAV ST Lube and Lifting Oil System",1,1,0.0000068316,0.0022380468,0.003051882,4,1.0,0.0005242447,0.0068493151,0.0030769231,0.0103125,0.0057441253,0.0096525097,0.0089686099,1.0,0.1815208486
1.2.2.7.4.4.3-17,CCOM2400,"Inspection of Oil tank",7112,"CCGTD1_IPS",TT_Task,"58529",-,-,-,100,TK_Complete,31/08/2019,23/10/2019,05/09/2019,25/10/2019,"CCOM2370 FS","CCOM2370","CCOM2510 FS","CCOM2510",213,257,214,258,49,60,49,60,73,,"CCGT D1_Integrated Programme Schedule;(OEM) Commissioning;COLD COMMISSIONING;Mechanical;Turboset Turning Gear;Steam Turbine on Turning Gear;10MAV ST Lube and Lifting Oil System",1,1,0.0000066246,0.002034588,0.0032553408,5,1.0,0.0004902041,0.0068493151,0.0030769231,0.01,0.0052219321,0.0102960103,0.0112107623,1.0,0.1675728062
1.2.2.7.4.4.3-18,CCOM2510,"Oil Tank refilling, pending cleanliness inspection",7112,"CCGTD1_IPS",TT_Task,"58529",-,-,-,100,TK_Complete,31/08/2019,28/10/2019,05/09/2019,28/10/2019,"CCOM2400 FS","CCOM2400","CCOM2580 FS","CCOM2580",213,258,214,258,49,60,49,60,73,,"CCGT D1_Integrated Programme Schedule;(OEM) Commissioning;COLD COMMISSIONING;Mechanical;Turboset Turning Gear;Steam Turbine on Turning Gear;10MAV ST Lube and Lifting Oil System",1,1,0.0000063348,0.0018311292,0.0034587996,5,1.0,0.0004902041,0.0068493151,0.0030769231,0.0095625,0.0046997389,0.0109395109,0.0112107623,1.0,0.1675728062
1.2.2.7.4.4.3-19,CCOM2580,"Oil Tank cleanliness inspection",7112,"CCGTD1_IPS",TT_Task,"58529",-,-,-,100,TK_Complete,31/08/2019,29/10/2019,05/09/2019,29/10/2019,"CCOM2510 FS","CCOM2510","CCOM2610 FS","CCOM2610",213,258,214,258,49,60,49,60,73,,"CCGT D1_Integrated Programme Schedule;(OEM) Commissioning;COLD COMMISSIONING;Mechanical;Turboset Turning Gear;Steam Turbine on Turning Gear;10MAV ST Lube and Lifting Oil System",1,1,0.0000059622,0.0016276704,0.0036622584,5,1.0,0.0004902041,0.0068493151,0.0030769231,0.009,0.0041775457,0.0115830116,0.0112107623,1.0,0.1675728062
1.2.2.7.4.4.3-20,CCOM2610,"Oil Tank refilling ongoing",7112,"CCGTD1_IPS",TT_Task,"58529",-,-,-,100,TK_Complete,31/08/2019,30/10/2019,05/09/2019,31/10/2019,"CCOM2580 FS","CCOM2580","CCOM2670 FS","CCOM2670",213,258,214,258,49,60,49,60,73,,"CCGT D1_Integrated Programme Schedule;(OEM) Commissioning;COLD COMMISSIONING;Mechanical;Turboset Turning Gear;Steam Turbine on Turning Gear;10MAV ST Lube and Lifting Oil System",1,1,0.0000055067,0.0014242116,0.0038657172,5,1.0,0.0004902041,0.0068493151,0.0030769231,0.0083125,0.0036553525,0.0122265122,0.0112107623,1.0,0.1675728062
1.2.2.7.4.4.3-21,CCOM2670,"Normalization of system",7112,"CCGTD1_IPS",TT_Task,"58529",-,-,-,100,TK_Complete,31/08/2019,02/11/2019,05/09/2019,02/11/2019,"CCOM2610 FS","CCOM2610","CCOM2730 FS","CCOM2730",213,259,214,259,49,60,49,60,73,,"CCGT D1_Integrated Programme Schedule;(OEM) Commissioning;COLD COMMISSIONING;Mechanical;Turboset Turning Gear;Steam Turbine on Turning Gear;10MAV ST Lube and Lifting Oil System",1,1,0.0000049685,0.0012207528,0.004069176,5,1.0,0.0004902041,0.0068493151,0.0030769231,0.0075,0.0031331593,0.0128700129,0.0112107623,1.0,0.1675728062
1.2.2.7.4.4.3-22,CCOM2730,"lube oil flushing ongoing",7112,"CCGTD1_IPS",TT_Task,"58529",-,-,-,100,TK_Complete,31/08/2019,04/11/2019,05/09/2019,13/11/2019,"CCOM2670 FS","CCOM2670","CCOM2990 FS","CCOM2990",213,259,214,260,49,60,49,60,73,,"CCGT D1_Integrated Programme Schedule;(OEM) Commissioning;COLD COMMISSIONING;Mechanical;Turboset Turning Gear;Steam Turbine on Turning Gear;10MAV ST Lube and Lifting Oil System",1,1,0.0000043474,0.001017294,0.0042726348,5,0.8,0.0004902041,0.0068493151,0.0030769231,0.0065625,0.0026109661,0.0135135135,0.0112107623,0.8,0.1675728062
1.2.2.7.4.4.3-23,CCOM2990,"Restoration ongoing",7112,"CCGTD1_IPS",TT_Task,"58529",-,-,-,100,TK_Complete,31/08/2019,13/11/2019,05/09/2019,16/11/2019,"CCOM2730 FS","CCOM2730","CCOM1465 FS","CCOM1465",213,260,214,261,49,60,49,60,74,,"CCGT D1_Integrated Programme Schedule;(OEM) Commissioning;COLD COMMISSIONING;Mechanical;Turboset Turning Gear;Steam Turbine on Turning Gear;10MAV ST Lube and Lifting Oil System",1,1,0.0000036435,0.0008138352,0.0044760936,5,1.0,0.0004902041,0.0068493151,0.0030769231,0.0055,0.0020887728,0.0141570142,0.0112107623,1.0,0.1675728062
1.2.2.7.4.4.3-24,CCOM1455,"Handover of TOP 10MAV-03",7112,"CCGTD1_IPS",TT_FinMile,"58529",-,-,-,100,TK_Complete,05/09/2019,27/03/2020,05/09/2019,27/03/2020,"TOP1160 FS","TOP1160","","",214,280,214,280,49,65,49,65,75,,"CCGT D1_Integrated Programme Schedule;(OEM) Commissioning;COLD COMMISSIONING;Mechanical;Turboset Turning Gear;Steam Turbine on Turning Gear;10MAV ST Lube and Lifting Oil System",1,0,0.0,0.0,0.0191251272,0,1.0,0.0000812387,0.0068493151,0.0,0.0,0.0,0.0604890605,0.0,1.0,0.0
1.2.2.7.4.4.3-25,CCOM1465,"Turning gear operation & adjustment of oil system tosupport GT turning gear",7112,"CCGTD1_IPS",TT_Task,"58529",-,-,-,100,TK_Complete,02/07/2020,18/11/2019,07/07/2020,21/12/2019,"CCOM2990 FS","CCOM2990","CCOM1475 FS","CCOM1475",257,261,257,266,60,61,60,62,92,,"CCGT D1_Integrated Programme Schedule;(OEM) Commissioning;COLD COMMISSIONING;Mechanical;Turboset Turning Gear;Steam Turbine on Turning Gear;10MAV ST Lube and Lifting Oil System",1,1,0.0000028569,0.0006103764,0.0046795524,5,0.0,0.0004902041,0.0068493151,0.0030769231,0.0043125,0.0015665796,0.0148005148,0.0112107623,0.0,0.1675728062
1.2.2.7.4.4.3-26,CCOM1475,"Topping up of main oil tank to normal operation Level",7112,"CCGTD1_IPS",TT_Task,"58529",-,-,-,100,TK_Complete,02/07/2020,18/11/2019,07/07/2020,23/11/2019,"CCOM1465 FS","CCOM1465","CCOM1485 FS","CCOM1485",257,261,257,262,60,61,60,61,92,,"CCGT D1_Integrated Programme Schedule;(OEM) Commissioning;COLD COMMISSIONING;Mechanical;Turboset Turning Gear;Steam Turbine on Turning Gear;10MAV ST Lube and Lifting Oil System",1,1,0.0000019874,0.0004069176,0.0048830112,5,1.0,0.0004902041,0.0068493151,0.0030769231,0.003,0.0010443864,0.0154440154,0.0112107623,1.0,0.1675728062
1.2.2.7.4.4.3-27,CCOM1485,"System offline for HCO inspection",7112,"CCGTD1_IPS",TT_Task,"58529",-,-,-,100,TK_Complete,02/07/2020,06/01/2020,07/07/2020,06/01/2020,"CCOM1475 FS","CCOM1475","CCOM4970 FS","CCOM4970",257,268,257,268,60,62,60,62,95,,"CCGT D1_Integrated Programme Schedule;(OEM) Commissioning;COLD COMMISSIONING;Mechanical;Turboset Turning Gear;Steam Turbine on Turning Gear;10MAV ST Lube and Lifting Oil System",1,1,0.0000010351,0.0002034588,0.00508647,5,1.0,0.0004902041,0.0068493151,0.0030769231,0.0015625,0.0005221932,0.0160875161,0.0112107623,1.0,0.1675728062
1.2.2.7.4.4.3-28,CCOM4970,"System operation",7112,"CCGTD1_IPS",TT_Task,"58529",-,-,-,100,TK_Complete,02/07/2020,13/01/2020,07/07/2020,18/01/2020,"CCOM1485 FS","CCOM1485","","",257,269,257,270,60,62,60,63,95,,"CCGT D1_Integrated Programme Schedule;(OEM) Commissioning;COLD COMMISSIONING;Mechanical;Turboset Turning Gear;Steam Turbine on Turning Gear;10MAV ST Lube and Lifting Oil System",1,0,0.0,0.0,0.0052899288,5,1.0,0.0004902041,0.0068493151,0.0,0.0,0.0,0.0167310167,0.0112107623,1.0,0.1675728062
1.2.2.7.4.4.4,58528,"10CP-ST Interface Panels ET200 in Function Area Steam Turbine",7112,"CCGTD1_IPS",WBS,"58527",,,,100,Complete,15/08/2019,15/08/2019,07/07/2020,30/11/2019,,,,,211,247,257,263,49,57,60,61,,,"CCGT D1_Integrated Programme Schedule;(OEM) Commissioning;COLD COMMISSIONING;Mechanical;Turboset Turning Gear;Steam Turbine on Turning Gear"
1.2.2.7.4.4.4-1,CCOM1200,"Loading of APs for ST",7112,"CCGTD1_IPS",TT_Task,"58528",-,-,-,100,TK_Complete,20/08/2019,20/08/2019,20/08/2019,20/08/2019,"CCOM1110 FS","CCOM1110","CCOM1390 FS","CCOM1390",211,248,211,248,49,58,49,58,70,,"CCGT D1_Integrated Programme Schedule;(OEM) Commissioning;COLD COMMISSIONING;Mechanical;Turboset Turning Gear;Steam Turbine on Turning Gear;10CP-ST Interface Panels ET200 in Function Area Steam Turbine",1,1,0.0000009109,0.0004069176,0.0022380468,0,1.0,0.0000812387,0.0068493151,0.0030769231,0.001375,0.0010443864,0.0070785071,0.0,1.0,0.0
1.2.2.7.4.4.4-2,CCOM1110,"Handover of TOP 10-CP-ST",7112,"CCGTD1_IPS",TT_FinMile,"58528",-,-,-,100,TK_Complete,15/08/2019,15/08/2019,15/08/2019,15/08/2019,"TOP1620 FS","TOP1620","CCOM1200 FS","CCOM1200",211,247,211,247,49,57,49,57,69,,"CCGT D1_Integrated Programme Schedule;(OEM) Commissioning;COLD COMMISSIONING;Mechanical;Turboset Turning Gear;Steam Turbine on Turning Gear;10CP-ST Interface Panels ET200 in Function Area Steam Turbine",1,1,0.0000012421,0.0006103764,0.002034588,0,1.0,0.0000812387,0.0068493151,0.0030769231,0.001875,0.0015665796,0.0064350064,0.0,1.0,0.0
1.2.2.7.4.4.4-3,CCOM1390,"Cold Commissioning",7112,"CCGTD1_IPS",TT_Task,"58528",-,-,-,100,TK_Complete,03/09/2019,03/09/2019,07/09/2019,09/09/2019,"CCOM1200 FS","CCOM1200","CCOM3300 FS","CCOM3300",213,250,214,251,49,58,50,58,75,,"CCGT D1_Integrated Programme Schedule;(OEM) Commissioning;COLD COMMISSIONING;Mechanical;Turboset Turning Gear;Steam Turbine on Turning Gear;10CP-ST Interface Panels ET200 in Function Area Steam Turbine",1,1,0.0000004968,0.0002034588,0.0024415056,4,0.6,0.0001503957,0.0068493151,0.0030769231,0.00075,0.0005221932,0.0077220077,0.0089686099,0.6,0.0283369572
1.2.2.7.4.4.4-4,CCOM3300,"cold commissioning MA-01",7112,"CCGTD1_IPS",TT_Task,"58528",-,-,-,100,TK_Complete,02/07/2020,21/11/2019,07/07/2020,30/11/2019,"CCOM1390 FS","CCOM1390","","",257,261,257,263,60,61,60,61,92,,"CCGT D1_Integrated Programme Schedule;(OEM) Commissioning;COLD COMMISSIONING;Mechanical;Turboset Turning Gear;Steam Turbine on Turning Gear;10CP-ST Interface Panels ET200 in Function Area Steam Turbine",1,0,0.0,0.0,0.0026449644,5,0.6,0.000209244,0.0068493151,0.0,0.0,0.0,0.0083655084,0.0112107623,0.6,0.0524499399
1.2.2.7.5,58524,"PGB",7112,"CCGTD1_IPS",WBS,"58520",,,,100,Complete,31/08/2019,30/09/2019,07/07/2020,21/12/2019,,,,,213,254,257,266,49,59,60,62,,,"CCGT D1_Integrated Programme Schedule;(OEM) Commissioning;COLD COMMISSIONING;Mechanical"
1.2.2.7.5.1,58525,"10PGB Closed Cooling Water System",7112,"CCGTD1_IPS",WBS,"58524",,,,100,Complete,31/08/2019,30/09/2019,07/07/2020,21/12/2019,,,,,213,254,257,266,49,59,60,62,,,"CCGT D1_Integrated Programme Schedule;(OEM) Commissioning;COLD COMMISSIONING;Mechanical;PGB"
1.2.2.7.5.1-1,CCOM1830,"Handover of TOP 10PGB",7112,"CCGTD1_IPS",TT_FinMile,"58525",-,-,-,100,TK_Complete,31/08/2019,30/09/2019,31/08/2019,30/09/2019,"TOP1420 FS","TOP1420","CCOM1840 FS","CCOM1840",213,254,213,254,49,59,49,59,72,,"CCGT D1_Integrated Programme Schedule;(OEM) Commissioning;COLD COMMISSIONING;Mechanical;PGB;10PGB Closed Cooling Water System",1,1,0.0000549844,0.0032553408,0.0168870804,0,1.0,0.0000812387,0.0068493151,0.0030769231,0.083,0.0083550914,0.0534105534,0.0,1.0,0.0
1.2.2.7.5.1-2,CCOM1840,"Rotation checks and motor solo runs incl re-coupling in preparation for flushing",7112,"CCGTD1_IPS",TT_Task,"58525",-,-,-,100,TK_Complete,31/08/2019,30/09/2019,05/09/2019,30/09/2019,"CCOM1830 FS","CCOM1830","CCOM1880 FS","CCOM1880",213,254,214,254,49,59,49,59,72,,"CCGT D1_Integrated Programme Schedule;(OEM) Commissioning;COLD COMMISSIONING;Mechanical;PGB;10PGB Closed Cooling Water System",1,1,0.0000521689,0.003051882,0.0170905392,5,1.0,0.0001503957,0.0068493151,0.0030769231,0.07875,0.0078328982,0.0540540541,0.0112107623,1.0,0.0283369572
1.2.2.7.5.1-3,CCOM1880,"Investigation works on elevated vibrations during motor solo runs for PGB11&12AP001",7112,"CCGTD1_IPS",TT_Task,"58525",-,-,-,100,TK_Complete,31/08/2019,02/10/2019,05/09/2019,02/10/2019,"CCOM1840 FS","CCOM1840","CCOM1910 FS","CCOM1910",213,254,214,254,49,59,49,59,72,,"CCGT D1_Integrated Programme Schedule;(OEM) Commissioning;COLD COMMISSIONING;Mechanical;PGB;10PGB Closed Cooling Water System",1,1,0.0000492706,0.0028484232,0.017293998,5,1.0,0.000209244,0.0068493151,0.0030769231,0.074375,0.007310705,0.0546975547,0.0112107623,1.0,0.0524499399
1.2.2.7.5.1-4,CCOM1910,"Prep for additional grouting works for baseframe of PGB11&12AP001",7112,"CCGTD1_IPS",TT_Task,"58525",-,-,-,100,TK_Complete,31/08/2019,03/10/2019,05/09/2019,03/10/2019,"CCOM1880 FS","CCOM1880","CCOM1930 FS","CCOM1930",213,254,214,254,49,59,49,59,72,,"CCGT D1_Integrated Programme Schedule;(OEM) Commissioning;COLD COMMISSIONING;Mechanical;PGB;10PGB Closed Cooling Water System",1,1,0.0000462896,0.0026449644,0.0174974568,5,1.0,0.0002593786,0.0068493151,0.0030769231,0.069875,0.0067885117,0.0553410553,0.0112107623,1.0,0.0729924654
1.2.2.7.5.1-5,CCOM1930,"Additional grouting works for baseframe of PGB11&12AP001",7112,"CCGTD1_IPS",TT_Task,"58525",-,-,-,100,TK_Complete,31/08/2019,04/10/2019,05/09/2019,04/10/2019,"CCOM1910 FS","CCOM1910","CCOM1990 FS","CCOM1990",213,255,214,255,49,59,49,59,72,,"CCGT D1_Integrated Programme Schedule;(OEM) Commissioning;COLD COMMISSIONING;Mechanical;PGB;10PGB Closed Cooling Water System",1,1,0.0000432257,0.0024415056,0.0177009156,5,1.0,0.0003021254,0.0068493151,0.0030769231,0.06525,0.0062663185,0.055984556,0.0112107623,1.0,0.0905078876
1.2.2.7.5.1-6,CCOM1990,"Re-testing of motor solo run after grouting",7112,"CCGTD1_IPS",TT_Task,"58525",-,-,-,100,TK_Complete,31/08/2019,09/10/2019,05/09/2019,09/10/2019,"CCOM1930 FS","CCOM1930","CCOM2050 FS","CCOM2050",213,255,214,255,49,59,49,59,72,,"CCGT D1_Integrated Programme Schedule;(OEM) Commissioning;COLD COMMISSIONING;Mechanical;PGB;10PGB Closed Cooling Water System",1,1,0.000040079,0.0022380468,0.0179043744,5,1.0,0.000338598,0.0068493151,0.0030769231,0.0605,0.0057441253,0.0566280566,0.0112107623,1.0,0.1054524737
1.2.2.7.5.1-7,CCOM2050,"Coupling of pump & setup for initial pump operation",7112,"CCGTD1_IPS",TT_Task,"58525",-,-,-,100,TK_Complete,31/08/2019,10/10/2019,05/09/2019,10/10/2019,"CCOM1990 FS","CCOM1990","CCOM2100 FS","CCOM2100",213,255,214,255,49,59,49,59,72,,"CCGT D1_Integrated Programme Schedule;(OEM) Commissioning;COLD COMMISSIONING;Mechanical;PGB;10PGB Closed Cooling Water System",1,1,0.0000368495,0.002034588,0.0181078332,5,1.0,0.0003696143,0.0068493151,0.0030769231,0.055625,0.0052219321,0.0572715573,0.0112107623,1.0,0.1181613545
1.2.2.7.5.1-8,CCOM2100,"Filling of baseframe with concrete and preparation for final grouting",7112,"CCGTD1_IPS",TT_Task,"58525",-,-,-,100,TK_Complete,31/08/2019,11/10/2019,05/09/2019,12/10/2019,"CCOM2050 FS","CCOM2050","CCOM2170 FS","CCOM2170",213,256,214,256,49,59,49,59,72,,"CCGT D1_Integrated Programme Schedule;(OEM) Commissioning;COLD COMMISSIONING;Mechanical;PGB;10PGB Closed Cooling Water System",1,1,0.0000335372,0.0018311292,0.018311292,5,1.0,0.000396007,0.0068493151,0.0030769231,0.050625,0.0046997389,0.0579150579,0.0112107623,1.0,0.1289756874
1.2.2.7.5.1-9,CCOM2170,"Curing time for concrete grouting ongoing",7112,"CCGTD1_IPS",TT_Task,"58525",-,-,-,100,TK_Complete,31/08/2019,14/10/2019,05/09/2019,14/10/2019,"CCOM2100 FS","CCOM2100","CCOM2210 FS","CCOM2210",213,256,214,256,49,59,49,59,72,,"CCGT D1_Integrated Programme Schedule;(OEM) Commissioning;COLD COMMISSIONING;Mechanical;PGB;10PGB Closed Cooling Water System",1,1,0.000030142,0.0016276704,0.0185147508,5,1.0,0.0004185845,0.0068493151,0.0030769231,0.0455,0.0041775457,0.0585585586,0.0112107623,1.0,0.1382268136
1.2.2.7.5.1-10,CCOM2210,"Motor solo run and coupling / fist flushing operation",7112,"CCGTD1_IPS",TT_Task,"58525",-,-,-,100,TK_Complete,31/08/2019,15/10/2019,05/09/2019,15/10/2019,"CCOM2170 FS","CCOM2170","CCOM2260 FS","CCOM2260",213,256,214,256,49,59,49,59,72,,"CCGT D1_Integrated Programme Schedule;(OEM) Commissioning;COLD COMMISSIONING;Mechanical;PGB;10PGB Closed Cooling Water System",1,1,0.0000266641,0.0014242116,0.0187182096,5,1.0,0.0004384472,0.0068493151,0.0030769231,0.04025,0.0036553525,0.0592020592,0.0112107623,1.0,0.1463655131
1.2.2.7.5.1-11,CCOM2260,"System flushing",7112,"CCGTD1_IPS",TT_Task,"58525",-,-,-,100,TK_Complete,31/08/2019,16/10/2019,05/09/2019,24/10/2019,"CCOM2210 FS","CCOM2210","CCOM2440 FS","CCOM2440",213,256,214,257,49,59,49,60,73,,"CCGT D1_Integrated Programme Schedule;(OEM) Commissioning;COLD COMMISSIONING;Mechanical;PGB;10PGB Closed Cooling Water System",1,1,0.0000231034,0.0012207528,0.0189216684,5,0.8,0.0004561636,0.0068493151,0.0030769231,0.034875,0.0031331593,0.0598455598,0.0112107623,0.8,0.1536247638
1.2.2.7.5.1-12,CCOM2440,"Oil draining",7112,"CCGTD1_IPS",TT_Task,"58525",-,-,-,100,TK_Complete,31/08/2019,24/10/2019,05/09/2019,28/10/2019,"CCOM2260 FS","CCOM2260","CCOM2590 FS","CCOM2590",213,257,214,258,49,60,49,60,73,,"CCGT D1_Integrated Programme Schedule;(OEM) Commissioning;COLD COMMISSIONING;Mechanical;PGB;10PGB Closed Cooling Water System",1,1,0.0000194598,0.001017294,0.0191251272,5,1.0,0.0004902041,0.0068493151,0.0030769231,0.029375,0.0026109661,0.0604890605,0.0112107623,1.0,0.1675728062
1.2.2.7.5.1-13,CCOM2590,"Restoration ongoing, prepare for filling",7112,"CCGTD1_IPS",TT_Task,"58525",-,-,-,100,TK_Complete,31/08/2019,29/10/2019,05/09/2019,13/11/2019,"CCOM2440 FS","CCOM2440","CCOM3480 FS","CCOM3480",213,258,214,260,49,60,49,60,74,,"CCGT D1_Integrated Programme Schedule;(OEM) Commissioning;COLD COMMISSIONING;Mechanical;PGB;10PGB Closed Cooling Water System",1,1,0.0000157335,0.0008138352,0.019328586,5,0.0,0.0004902041,0.0068493151,0.0030769231,0.02375,0.0020887728,0.0611325611,0.0112107623,0.0,0.1675728062
1.2.2.7.5.1-14,CCOM3480,"Refilling System, adjusting flowrates (pending finalization of reinstatements)",7112,"CCGTD1_IPS",TT_Task,"58525",-,-,-,100,TK_Complete,02/07/2020,12/11/2019,07/07/2020,16/11/2019,"CCOM2590 FS","CCOM2590","CCOM3490 FS","CCOM3490",257,260,257,261,60,60,60,60,92,,"CCGT D1_Integrated Programme Schedule;(OEM) Commissioning;COLD COMMISSIONING;Mechanical;PGB;10PGB Closed Cooling Water System",1,1,0.0000119243,0.0006103764,0.0195320448,5,1.0,0.0004902041,0.0068493151,0.0030769231,0.018,0.0015665796,0.0617760618,0.0112107623,1.0,0.1675728062
1.2.2.7.5.1-15,CCOM3490,"Refilling System, adjusting flowrates (pending finalization of reinstatements)",7112,"CCGTD1_IPS",TT_Task,"58525",-,-,-,100,TK_Complete,02/07/2020,19/11/2019,07/07/2020,23/11/2019,"CCOM3480 FS","CCOM3480","CCOM3500 FS","CCOM3500",257,261,257,262,60,61,60,61,92,,"CCGT D1_Integrated Programme Schedule;(OEM) Commissioning;COLD COMMISSIONING;Mechanical;PGB;10PGB Closed Cooling Water System",1,1,0.0000080324,0.0004069176,0.0197355036,5,1.0,0.0004902041,0.0068493151,0.0030769231,0.012125,0.0010443864,0.0624195624,0.0112107623,1.0,0.1675728062
1.2.2.7.5.1-16,CCOM3500,"System in operation, adjusting flowrates",7112,"CCGTD1_IPS",TT_Task,"58525",-,-,-,100,TK_Complete,02/07/2020,27/11/2019,07/07/2020,30/11/2019,"CCOM3490 FS","CCOM3490","CCOM3510 FS","CCOM3510",257,262,257,263,60,61,60,61,92,,"CCGT D1_Integrated Programme Schedule;(OEM) Commissioning;COLD COMMISSIONING;Mechanical;PGB;10PGB Closed Cooling Water System",1,1,0.0000040576,0.0002034588,0.0199389624,5,1.0,0.0004902041,0.0068493151,0.0030769231,0.006125,0.0005221932,0.0630630631,0.0112107623,1.0,0.1675728062
1.2.2.7.5.1-17,CCOM3510,"System in service for flushing",7112,"CCGTD1_IPS",TT_Task,"58525",-,-,-,100,TK_Complete,02/07/2020,09/12/2019,07/07/2020,21/12/2019,"CCOM3500 FS","CCOM3500","","",257,264,257,266,60,61,60,62,92,,"CCGT D1_Integrated Programme Schedule;(OEM) Commissioning;COLD COMMISSIONING;Mechanical;PGB;10PGB Closed Cooling Water System",1,0,0.0,0.0,0.0201424212,5,0.4,0.0004902041,0.0068493151,0.0,0.0,0.0,0.0637065637,0.0112107623,0.4,0.1675728062
1.2.2.7.6,58521,"Demin Water",7112,"CCGTD1_IPS",WBS,"58520",,,,100,Complete,23/05/2019,22/05/2019,12/09/2019,22/11/2019,,,,,199,235,215,262,46,55,50,61,,,"CCGT D1_Integrated Programme Schedule;(OEM) Commissioning;COLD COMMISSIONING;Mechanical"
1.2.2.7.6.1,58523,"Demin Water Distribution",7112,"CCGTD1_IPS",WBS,"58521",,,,100,Complete,28/08/2019,28/08/2019,12/09/2019,22/11/2019,,,,,213,249,215,262,49,58,50,61,,,"CCGT D1_Integrated Programme Schedule;(OEM) Commissioning;COLD COMMISSIONING;Mechanical;Demin Water"
1.2.2.7.6.1-1,CCOM1590,"Handover of TOP-10GHC-01",7112,"CCGTD1_IPS",TT_FinMile,"58523",-,-,-,100,TK_Complete,12/09/2019,12/09/2019,12/09/2019,12/09/2019,"TOP2860 FS","TOP2860","CCOM1630 FS","CCOM1630",215,251,215,251,50,58,50,58,76,,"CCGT D1_Integrated Programme Schedule;(OEM) Commissioning;COLD COMMISSIONING;Mechanical;Demin Water;Demin Water Distribution",1,1,0.0000028707,0.0004069176,0.0207527976,0,1.0,0.0000812387,0.0068493151,0.0030769231,0.0043333333,0.0010443864,0.0656370656,0.0,1.0,0.0
1.2.2.7.6.1-2,CCOM1600,"Handover of TOP-10GHC-02",7112,"CCGTD1_IPS",TT_FinMile,"58523",-,-,-,100,TK_Complete,12/09/2019,12/09/2019,12/09/2019,12/09/2019,"TOP2870 FS","TOP2870","CCOM1630 FS","CCOM1630",215,251,215,251,50,58,50,58,76,,"CCGT D1_Integrated Programme Schedule;(OEM) Commissioning;COLD COMMISSIONING;Mechanical;Demin Water;Demin Water Distribution",1,1,0.0000028707,0.0004069176,0.0207527976,0,1.0,0.0000812387,0.0068493151,0.0030769231,0.0043333333,0.0010443864,0.0656370656,0.0,1.0,0.0
1.2.2.7.6.1-3,CCOM1610,"Handover of TOP-10GHC-03",7112,"CCGTD1_IPS",TT_FinMile,"58523",-,-,-,100,TK_Complete,12/09/2019,12/09/2019,12/09/2019,12/09/2019,"TOP2880 FS","TOP2880","CCOM1630 FS","CCOM1630",215,251,215,251,50,58,50,58,76,,"CCGT D1_Integrated Programme Schedule;(OEM) Commissioning;COLD COMMISSIONING;Mechanical;Demin Water;Demin Water Distribution",1,1,0.0000028707,0.0004069176,0.0207527976,0,1.0,0.0000812387,0.0068493151,0.0030769231,0.0043333333,0.0010443864,0.0656370656,0.0,1.0,0.0
1.2.2.7.6.1-4,CCOM1310,"LUN to CLP for Energisation of Electrical cabinet 10GHC10GH001/2 on 30-Aug",7112,"CCGTD1_IPS",TT_Task,"58523",-,-,-,100,TK_Complete,28/08/2019,28/08/2019,02/09/2019,29/08/2019,"","","CCOM1350 FS","CCOM1350",213,249,213,249,49,58,49,58,70,,"CCGT D1_Integrated Programme Schedule;(OEM) Commissioning;COLD COMMISSIONING;Mechanical;Demin Water;Demin Water Distribution",0,1,0.0,0.0014242116,0.0,5,1.0,0.0000812387,0.0,0.0030769231,0.0,0.0036553525,0.0,0.0112107623,1.0,0.0
1.2.2.7.6.1-5,CCOM1350,"Energisation of Electrical Cabinet 10GHC10GH001/2",7112,"CCGTD1_IPS",TT_Task,"58523",-,-,-,100,TK_Complete,31/08/2019,03/09/2019,05/09/2019,03/09/2019,"CCOM1310 FS","CCOM1310","CCOM1400 FS,CCOM1420 FS","CCOM1400,CCOM1420",213,250,214,250,49,58,49,58,71,,"CCGT D1_Integrated Programme Schedule;(OEM) Commissioning;COLD COMMISSIONING;Mechanical;Demin Water;Demin Water Distribution",1,2,0.0000002484,0.0012207528,0.0002034588,5,1.0,0.0001503957,0.0068493151,0.0061538462,0.000375,0.0031331593,0.0006435006,0.0112107623,1.0,0.0283369572
1.2.2.7.6.1-6,CCOM1400,"Cold Commissioning of Electrical Cabinet and Pump Motors",7112,"CCGTD1_IPS",TT_Task,"58523",-,-,-,100,TK_Complete,31/08/2019,04/09/2019,05/09/2019,07/09/2019,"CCOM1350 FS","CCOM1350","CCOM1520 FS","CCOM1520",213,250,214,251,49,58,49,58,71,,"CCGT D1_Integrated Programme Schedule;(OEM) Commissioning;COLD COMMISSIONING;Mechanical;Demin Water;Demin Water Distribution",1,1,0.0000001656,0.0008138352,0.0004069176,5,1.0,0.0001452414,0.0068493151,0.0030769231,0.00025,0.0020887728,0.0012870013,0.0112107623,1.0,0.02622497
1.2.2.7.6.1-7,CCOM1420,"Preparation for System Flushing",7112,"CCGTD1_IPS",TT_Task,"58523",-,-,-,100,TK_Complete,04/09/2019,04/09/2019,09/09/2019,07/09/2019,"CCOM1350 FS","CCOM1350","CCOM1520 FS","CCOM1520",214,250,214,251,49,58,50,58,75,,"CCGT D1_Integrated Programme Schedule;(OEM) Commissioning;COLD COMMISSIONING;Mechanical;Demin Water;Demin Water Distribution",1,1,0.0000001656,0.0008138352,0.0004069176,5,1.0,0.0001452414,0.0068493151,0.0030769231,0.00025,0.0020887728,0.0012870013,0.0112107623,1.0,0.02622497
1.2.2.7.6.1-8,CCOM1520,"System flushing",7112,"CCGTD1_IPS",TT_Task,"58523",-,-,-,100,TK_Complete,31/08/2019,09/09/2019,05/09/2019,09/09/2019,"CCOM1400 FS,CCOM1420 FS","CCOM1400,CCOM1420","CCOM1560 FS","CCOM1560",213,251,214,251,49,58,49,58,71,,"CCGT D1_Integrated Programme Schedule;(OEM) Commissioning;COLD COMMISSIONING;Mechanical;Demin Water;Demin Water Distribution",2,1,0.0000004968,0.0006103764,0.0008138352,5,1.0,0.0003285356,0.0136986301,0.0030769231,0.00075,0.0015665796,0.0025740026,0.0112107623,1.0,0.1013294226
1.2.2.7.6.1-9,CCOM1560,"System restoration post flush",7112,"CCGTD1_IPS",TT_Task,"58523",-,-,-,100,TK_Complete,31/08/2019,10/09/2019,05/09/2019,14/09/2019,"CCOM1520 FS","CCOM1520","CCOM1630 FS","CCOM1630",213,251,214,252,49,58,49,58,71,,"CCGT D1_Integrated Programme Schedule;(OEM) Commissioning;COLD COMMISSIONING;Mechanical;Demin Water;Demin Water Distribution",1,1,0.000000414,0.0004069176,0.001017294,5,1.0,0.0003609737,0.0068493151,0.0030769231,0.000625,0.0010443864,0.0032175032,0.0112107623,1.0,0.1146208703
1.2.2.7.6.1-10,CCOM1630,"System Commissioning",7112,"CCGTD1_IPS",TT_Task,"58523",-,-,-,100,TK_Complete,31/08/2019,16/09/2019,05/09/2019,16/09/2019,"CCOM1590 FS,CCOM1600 FS,CCOM1610 FS,CCOM1560 FS","CCOM1590,CCOM1600,CCOM1610,CCOM1560","CCOM3020 FS","CCOM3020",213,252,214,252,49,58,49,58,71,,"CCGT D1_Integrated Programme Schedule;(OEM) Commissioning;COLD COMMISSIONING;Mechanical;Demin Water;Demin Water Distribution",4,1,0.0000046786,0.0002034588,0.0229908444,5,1.0,0.0005962036,0.0273972603,0.0030769231,0.0070625,0.0005221932,0.0727155727,0.0112107623,1.0,0.2110058707
1.2.2.7.6.1-11,CCOM3020,"Draining of system for finalising the tie-in works for dosing system",7112,"CCGTD1_IPS",TT_Task,"58523",-,-,-,100,TK_Complete,31/08/2019,13/11/2019,05/09/2019,22/11/2019,"CCOM1630 FS","CCOM1630","","",213,260,214,262,49,60,49,61,74,,"CCGT D1_Integrated Programme Schedule;(OEM) Commissioning;COLD COMMISSIONING;Mechanical;Demin Water;Demin Water Distribution",1,0,0.0,0.0,0.0231943032,5,0.6,0.000588906,0.0068493151,0.0,0.0,0.0,0.0733590734,0.0112107623,0.6,0.208015725
1.2.2.7.6.2,58522,"Demin Water for Construction",7112,"CCGTD1_IPS",WBS,"58521",,,,100,Complete,23/05/2019,22/05/2019,23/05/2019,22/05/2019,,,,,199,235,199,235,46,55,46,55,,,"CCGT D1_Integrated Programme Schedule;(OEM) Commissioning;COLD COMMISSIONING;Mechanical;Demin Water"
1.2.2.7.6.2-1,CCOM1000,"Demin Water available for Construction",7112,"CCGTD1_IPS",TT_Mile,"58522",-,-,-,100,TK_Complete,23/05/2019,22/05/2019,23/05/2019,22/05/2019,"","","S1120 SS","S1120",199,235,199,235,46,55,46,55,59,,"CCGT D1_Integrated Programme Schedule;(OEM) Commissioning;COLD COMMISSIONING;Mechanical;Demin Water;Demin Water for Construction",0,0,0.0,0.0,0.0,0,1.0,0.0000812387,0.0,0.0,0.0,0.0,0.0,0.0,1.0,0.0
1.2.2.8,58294,"CNY Outage & Fuel Availability",7112,"CCGTD1_IPS",WBS,"58519",,,,100,Complete,05/02/2020,05/02/2020,14/02/2020,13/02/2020,,,,,236,272,237,273,55,63,55,63,,,"CCGT D1_Integrated Programme Schedule;(OEM) Commissioning;COLD COMMISSIONING"
1.2.2.9,58292,"All Required Outstanding Construction & Cold Commissioning Activities for FF",7112,"CCGTD1_IPS",WBS,"58519",,,,100,Complete,25/11/2019,25/11/2019,13/02/2020,23/01/2020,,,,,225,262,237,270,52,61,55,63,,,"CCGT D1_Integrated Programme Schedule;(OEM) Commissioning;COLD COMMISSIONING"
1.2.2.10,58291,"Construction Completion Readiness of Chemical Clean",7112,"CCGTD1_IPS",WBS,"58519",,,,100,Complete,25/11/2019,25/11/2019,29/11/2019,29/11/2019,,,,,225,262,226,263,52,61,52,61,,,"CCGT D1_Integrated Programme Schedule;(OEM) Commissioning;COLD COMMISSIONING"
1.2.2.11,58290,"First Fire Readiness Reviews",7112,"CCGTD1_IPS",WBS,"58519",,,,100,Complete,02/12/2019,02/12/2019,23/01/2020,23/01/2020,,,,,226,263,234,270,52,61,54,63,,,"CCGT D1_Integrated Programme Schedule;(OEM) Commissioning;COLD COMMISSIONING"
1.2.2.12,58289,"Chemical Cleaning Commissioning Activities",7112,"CCGTD1_IPS",WBS,"58519",,,,100,Complete,28/11/2019,28/11/2019,18/12/2019,18/12/2019,,,,,226,262,229,265,52,61,53,62,,,"CCGT D1_Integrated Programme Schedule;(OEM) Commissioning;COLD COMMISSIONING"
1.2.2.13,58288,"Outage - Restoration [Affected Component List / Reinstatement] (Detail still to develop)",7112,"CCGTD1_IPS",WBS,"58519",,,,100,Complete,19/12/2019,19/12/2019,24/01/2020,18/01/2020,,,,,229,265,234,270,53,62,54,63,,,"CCGT D1_Integrated Programme Schedule;(OEM) Commissioning;COLD COMMISSIONING"
1.2.2.13.1,58296,"Restoration (Construction Works)",7112,"CCGTD1_IPS",WBS,"58288",,,,100,Complete,19/12/2019,19/12/2019,16/01/2020,09/01/2020,,,,,229,265,233,268,53,62,54,62,,,"CCGT D1_Integrated Programme Schedule;(OEM) Commissioning;COLD COMMISSIONING;Outage - Restoration [Affected Component List / Reinstatement] (Detail still to develop)"
1.2.2.13.2,58295,"Siemens Works",7112,"CCGTD1_IPS",WBS,"58288",,,,100,Complete,19/12/2019,19/12/2019,24/01/2020,18/01/2020,,,,,229,265,234,270,53,62,54,63,,,"CCGT D1_Integrated Programme Schedule;(OEM) Commissioning;COLD COMMISSIONING;Outage - Restoration [Affected Component List / Reinstatement] (Detail still to develop)"
1.2.3,58237,"HC - Hot Commissioing",7112,"CCGTD1_IPS",WBS,"58518",,,,100,Complete,27/01/2020,24/01/2020,01/10/2021,,,,,,234,271,322,,54,63,75,,,,"CCGT D1_Integrated Programme Schedule;(OEM) Commissioning"
1.2.3.1,60070,"Operation",7112,"CCGTD1_IPS",WBS,"58237",,,,100,Complete,01/06/2021,28/09/2020,07/06/2021,18/02/2021,,,,,304,306,305,326,71,71,71,76,,,"CCGT D1_Integrated Programme Schedule;(OEM) Commissioning;HC - Hot Commissioing"
1.2.3.1-1,A3900,"Unit under Operation Control",7112,"CCGTD1_IPS",TT_Task,"60070",-,-,-,100,TK_Complete,01/06/2021,28/09/2020,07/06/2021,18/02/2021,"HCOM2170 FS","HCOM2170","A3500 FS,S1150 SS,S1150 FF,A4210 SS","A3500,S1150,S1150,A4210",304,306,305,326,71,71,71,76,97,,"CCGT D1_Integrated Programme Schedule;(OEM) Commissioning;HC - Hot Commissioing;Operation",1,2,0.0000134149,0.0006103764,0.0219735504,6,0.0,0.0004902041,0.0068493151,0.0061538462,0.02025,0.0015665796,0.0694980695,0.0134529148,0.0,0.1675728062
1.2.3.2,60063,"Prepare Handover for TB2 Outage",7112,"CCGTD1_IPS",WBS,"58237",,,,100,Complete,01/06/2021,19/02/2021,07/06/2021,,,,,,304,327,305,,71,76,71,,,,"CCGT D1_Integrated Programme Schedule;(OEM) Commissioning;HC - Hot Commissioing"
1.2.3.2-1,A3500,"Unit Cool down",7112,"CCGTD1_IPS",TT_Task,"60063",-,-,-,100,TK_Complete,01/06/2021,19/02/2021,07/06/2021,20/02/2021,"A3900 FS","A3900","A3510 FS,S1160 SS","A3510,S1160",304,327,305,327,71,76,71,76,96,,"CCGT D1_Integrated Programme Schedule;(OEM) Commissioning;HC - Hot Commissioing;Prepare Handover for TB2 Outage",1,1,0.000004513,0.0002034588,0.0221770092,6,1.0,0.0004902041,0.0068493151,0.0030769231,0.0068125,0.0005221932,0.0701415701,0.0134529148,1.0,0.1675728062
1.2.3.2-2,A3510,"Unit offline and Issue PTW's",7112,"CCGTD1_IPS",TT_Task,"60063",-,-,-,100,TK_Complete,01/06/2021,21/02/2021,07/06/2021,21/02/2021,"A3500 FS","A3500","","",304,327,305,327,71,76,71,76,96,,"CCGT D1_Integrated Programme Schedule;(OEM) Commissioning;HC - Hot Commissioing;Prepare Handover for TB2 Outage",1,0,0.0,0.0,0.022380468,6,1.0,0.0004902041,0.0068493151,0.0,0.0,0.0,0.0707850708,0.0134529148,1.0,0.1675728062
1.2.3.2-3,A3520,"TB2 Handover to Siemens",7112,"CCGTD1_IPS",TT_Task,"60063",-,-,-,100,TK_Complete,01/06/2021,22/02/2021,07/06/2021,22/02/2021,"","","A3530 SS","A3530",304,327,305,327,71,76,71,76,96,,"CCGT D1_Integrated Programme Schedule;(OEM) Commissioning;HC - Hot Commissioing;Prepare Handover for TB2 Outage",0,1,0.0,0.008138352,0.0,6,1.0,0.0000812387,0.0,0.0030769231,0.0,0.0208877285,0.0,0.0134529148,1.0,0.0
1.2.3.2.1,60067,"Start F/ Oil Commissioning",7112,"CCGTD1_IPS",WBS,"60063",,,,100,Complete,01/06/2021,07/04/2021,07/06/2021,31/05/2021,,,,,304,333,305,341,71,77,71,79,,,"CCGT D1_Integrated Programme Schedule;(OEM) Commissioning;HC - Hot Commissioing;Prepare Handover for TB2 Outage"
1.2.3.2.1.1,60069,"Siemens culpibility for SCR Defect Rectification Wrks-19days Dur deduct fr the 90D correction period",7112,"CCGTD1_IPS",WBS,"60067",,,,100,Complete,01/06/2021,13/05/2021,07/06/2021,31/05/2021,,,,,304,338,305,341,71,79,71,79,,,"CCGT D1_Integrated Programme Schedule;(OEM) Commissioning;HC - Hot Commissioing;Prepare Handover for TB2 Outage;Start F/ Oil Commissioning"
1.2.3.2.1.1-1,A3870,"SCR RTR Phase 2",7112,"CCGTD1_IPS",TT_Task,"60069",-,-,-,100,TK_Complete,01/06/2021,13/05/2021,07/06/2021,22/05/2021,"A3860 FS","A3860","A3880 FS","A3880",304,338,305,340,71,79,71,79,97,,"CCGT D1_Integrated Programme Schedule;(OEM) Commissioning;HC - Hot Commissioing;Prepare Handover for TB2 Outage;Start F/ Oil Commissioning;Siemens culpibility for SCR Defect Rectification Wrks-19days Dur deduct fr the 90D correction period",1,1,0.0000043474,0.0006103764,0.007121058,6,1.0,0.0004902041,0.0068493151,0.0030769231,0.0065625,0.0015665796,0.0225225225,0.0134529148,1.0,0.1675728062
1.2.3.2.1.1-2,A3880,"SCR RTR Phase 3",7112,"CCGTD1_IPS",TT_Task,"60069",-,-,-,100,TK_Complete,01/06/2021,23/05/2021,07/06/2021,30/05/2021,"A3870 FS","A3870","A3890 FS","A3890",304,340,305,341,71,79,71,79,97,,"CCGT D1_Integrated Programme Schedule;(OEM) Commissioning;HC - Hot Commissioing;Prepare Handover for TB2 Outage;Start F/ Oil Commissioning;Siemens culpibility for SCR Defect Rectification Wrks-19days Dur deduct fr the 90D correction period",1,1,0.0000029811,0.0004069176,0.0073245168,6,0.8,0.0004902041,0.0068493151,0.0030769231,0.0045,0.0010443864,0.0231660232,0.0134529148,0.8,0.1675728062
1.2.3.2.1.1-3,A3890,"SCR RTR Phase 3 - Handover tp CPL - Section 6 part 2",7112,"CCGTD1_IPS",TT_Task,"60069",-,-,-,100,TK_Complete,01/06/2021,31/05/2021,07/06/2021,31/05/2021,"A3880 FS","A3880","S1170 FF,A4260 FF","S1170,A4260",304,341,305,341,71,79,71,79,97,,"CCGT D1_Integrated Programme Schedule;(OEM) Commissioning;HC - Hot Commissioing;Prepare Handover for TB2 Outage;Start F/ Oil Commissioning;Siemens culpibility for SCR Defect Rectification Wrks-19days Dur deduct fr the 90D correction period",1,1,0.0000015319,0.0002034588,0.0075279756,6,1.0,0.0004902041,0.0068493151,0.0030769231,0.0023125,0.0005221932,0.0238095238,0.0134529148,1.0,0.1675728062
1.2.3.2.1.2,60068,"Contractual Fuel Oil Commissioning and Performance testing Duration (36Days)",7112,"CCGTD1_IPS",WBS,"60067",,,,100,Complete,01/06/2021,07/04/2021,07/06/2021,12/05/2021,,,,,304,333,305,338,71,77,71,79,,,"CCGT D1_Integrated Programme Schedule;(OEM) Commissioning;HC - Hot Commissioing;Prepare Handover for TB2 Outage;Start F/ Oil Commissioning"
1.2.3.2.1.2-1,A3600,"Fuel oil commissioning - Water purge testing",7112,"CCGTD1_IPS",TT_Task,"60068",-,-,-,100,TK_Complete,01/06/2021,07/04/2021,07/06/2021,08/04/2021,"A3590 FS","A3590","A3610 FS,S1170 SS","A3610,S1170",304,333,305,333,71,77,71,77,96,,"CCGT D1_Integrated Programme Schedule;(OEM) Commissioning;HC - Hot Commissioing;Prepare Handover for TB2 Outage;Start F/ Oil Commissioning;Contractual Fuel Oil Commissioning and Performance testing Duration (36Days)",1,1,0.0000099369,0.006103764,0.0016276704,6,1.0,0.0004185845,0.0068493151,0.0030769231,0.015,0.0156657963,0.0051480051,0.0134529148,1.0,0.1382268136
1.2.3.2.1.2-2,A3610,"Fuel oil commissioning - Start up Testing & Initial Change over testing @20%",7112,"CCGTD1_IPS",TT_Task,"60068",-,-,-,100,TK_Complete,01/06/2021,09/04/2021,07/06/2021,09/04/2021,"A3600 FS","A3600","A3620 FS","A3620",304,334,305,334,71,77,71,77,96,,"CCGT D1_Integrated Programme Schedule;(OEM) Commissioning;HC - Hot Commissioing;Prepare Handover for TB2 Outage;Start F/ Oil Commissioning;Contractual Fuel Oil Commissioning and Performance testing Duration (36Days)",1,1,0.0000108064,0.0059003052,0.0018311292,6,1.0,0.0004384472,0.0068493151,0.0030769231,0.0163125,0.0151436031,0.0057915058,0.0134529148,1.0,0.1463655131
1.2.3.2.1.2-3,A3620,"Fuel oil commissioning - Partload combustion tuning (incl NoX Water Tuning)",7112,"CCGTD1_IPS",TT_Task,"60068",-,-,-,100,TK_Complete,01/06/2021,10/04/2021,07/06/2021,11/04/2021,"A3610 FS","A3610","A3630 FS","A3630",304,334,305,334,71,77,71,78,96,,"CCGT D1_Integrated Programme Schedule;(OEM) Commissioning;HC - Hot Commissioing;Prepare Handover for TB2 Outage;Start F/ Oil Commissioning;Contractual Fuel Oil Commissioning and Performance testing Duration (36Days)",1,1,0.0000115931,0.0056968464,0.002034588,6,1.0,0.0004561636,0.0068493151,0.0030769231,0.0175,0.0146214099,0.0064350064,0.0134529148,1.0,0.1536247638
1.2.3.2.1.2-4,A3630,"Fuel oil commissioning - Baseload combustion tuning (incl NoX Water Tuning)",7112,"CCGTD1_IPS",TT_Task,"60068",-,-,-,100,TK_Complete,01/06/2021,12/04/2021,07/06/2021,12/04/2021,"A3620 FS","A3620","A3640 FS","A3640",304,334,305,334,71,78,71,78,96,,"CCGT D1_Integrated Programme Schedule;(OEM) Commissioning;HC - Hot Commissioing;Prepare Handover for TB2 Outage;Start F/ Oil Commissioning;Contractual Fuel Oil Commissioning and Performance testing Duration (36Days)",1,1,0.000012297,0.0054933876,0.0022380468,6,1.0,0.0004902041,0.0068493151,0.0030769231,0.0185625,0.0140992167,0.0070785071,0.0134529148,1.0,0.1675728062
1.2.3.2.1.2-5,A3640,"Fuel oil commissioning - inspection after initial Fuel Oil preparation (burner filters, MBN,MBU,EG)",7112,"CCGTD1_IPS",TT_Task,"60068",-,-,-,100,TK_Complete,01/06/2021,13/04/2021,07/06/2021,13/04/2021,"A3630 FS","A3630","A3650 FS","A3650",304,334,305,334,71,78,71,78,96,,"CCGT D1_Integrated Programme Schedule;(OEM) Commissioning;HC - Hot Commissioing;Prepare Handover for TB2 Outage;Start F/ Oil Commissioning;Contractual Fuel Oil Commissioning and Performance testing Duration (36Days)",1,1,0.000012918,0.0052899288,0.0024415056,6,1.0,0.0004902041,0.0068493151,0.0030769231,0.0195,0.0135770235,0.0077220077,0.0134529148,1.0,0.1675728062
1.2.3.2.1.2-6,A3650,"Fuel oil commissioning - Start up testing & Initial Change over testing @ 20%",7112,"CCGTD1_IPS",TT_Task,"60068",-,-,-,100,TK_Complete,01/06/2021,14/04/2021,07/06/2021,14/04/2021,"A3640 FS","A3640","A3660 FS","A3660",304,334,305,334,71,78,71,78,96,,"CCGT D1_Integrated Programme Schedule;(OEM) Commissioning;HC - Hot Commissioing;Prepare Handover for TB2 Outage;Start F/ Oil Commissioning;Contractual Fuel Oil Commissioning and Performance testing Duration (36Days)",1,1,0.0000134563,0.00508647,0.0026449644,6,1.0,0.0004902041,0.0068493151,0.0030769231,0.0203125,0.0130548303,0.0083655084,0.0134529148,1.0,0.1675728062
1.2.3.2.1.2-7,A3660,"Fuel oil commissioning - Start up testing & Initial Change over testing @ 30%",7112,"CCGTD1_IPS",TT_Task,"60068",-,-,-,100,TK_Complete,01/06/2021,15/04/2021,07/06/2021,15/04/2021,"A3650 FS","A3650","A3670 FS","A3670",304,334,305,334,71,78,71,78,96,,"CCGT D1_Integrated Programme Schedule;(OEM) Commissioning;HC - Hot Commissioing;Prepare Handover for TB2 Outage;Start F/ Oil Commissioning;Contractual Fuel Oil Commissioning and Performance testing Duration (36Days)",1,1,0.0000139117,0.0048830112,0.0028484232,6,1.0,0.0004902041,0.0068493151,0.0030769231,0.021,0.0125326371,0.009009009,0.0134529148,1.0,0.1675728062
1.2.3.2.1.2-8,A3670,"Fuel oil commissioning - Change over testing @ 40%",7112,"CCGTD1_IPS",TT_Task,"60068",-,-,-,100,TK_Complete,01/06/2021,16/04/2021,07/06/2021,16/04/2021,"A3660 FS","A3660","A3680 FS","A3680",304,335,305,335,71,78,71,78,96,,"CCGT D1_Integrated Programme Schedule;(OEM) Commissioning;HC - Hot Commissioing;Prepare Handover for TB2 Outage;Start F/ Oil Commissioning;Contractual Fuel Oil Commissioning and Performance testing Duration (36Days)",1,1,0.0000142843,0.0046795524,0.003051882,6,1.0,0.0004902041,0.0068493151,0.0030769231,0.0215625,0.0120104439,0.0096525097,0.0134529148,1.0,0.1675728062
1.2.3.2.1.2-9,A3680,"Fuel oil commissioning - Change over testing @ 50%",7112,"CCGTD1_IPS",TT_Task,"60068",-,-,-,100,TK_Complete,01/06/2021,17/04/2021,07/06/2021,17/04/2021,"A3670 FS","A3670","A3690 FS","A3690",304,335,305,335,71,78,71,78,96,,"CCGT D1_Integrated Programme Schedule;(OEM) Commissioning;HC - Hot Commissioing;Prepare Handover for TB2 Outage;Start F/ Oil Commissioning;Contractual Fuel Oil Commissioning and Performance testing Duration (36Days)",1,1,0.0000145742,0.0044760936,0.0032553408,6,1.0,0.0004902041,0.0068493151,0.0030769231,0.022,0.0114882507,0.0102960103,0.0134529148,1.0,0.1675728062
1.2.3.2.1.2-10,A3690,"Fuel oil commissioning - Change over testing @ 60%",7112,"CCGTD1_IPS",TT_Task,"60068",-,-,-,100,TK_Complete,01/06/2021,18/04/2021,07/06/2021,18/04/2021,"A3680 FS","A3680","A3700 FS","A3700",304,335,305,335,71,78,71,78,96,,"CCGT D1_Integrated Programme Schedule;(OEM) Commissioning;HC - Hot Commissioing;Prepare Handover for TB2 Outage;Start F/ Oil Commissioning;Contractual Fuel Oil Commissioning and Performance testing Duration (36Days)",1,1,0.0000147812,0.0042726348,0.0034587996,6,1.0,0.0004902041,0.0068493151,0.0030769231,0.0223125,0.0109660574,0.0109395109,0.0134529148,1.0,0.1675728062
1.2.3.2.1.2-11,A3710,"Fuel oil commissioning - Change over testing @ 70%",7112,"CCGTD1_IPS",TT_Task,"60068",-,-,-,100,TK_Complete,01/06/2021,20/04/2021,07/06/2021,20/04/2021,"A3700 FS","A3700","A3720 FS","A3720",304,335,305,335,71,78,71,78,96,,"CCGT D1_Integrated Programme Schedule;(OEM) Commissioning;HC - Hot Commissioing;Prepare Handover for TB2 Outage;Start F/ Oil Commissioning;Contractual Fuel Oil Commissioning and Performance testing Duration (36Days)",1,1,0.0000149468,0.0038657172,0.0038657172,6,1.0,0.0004902041,0.0068493151,0.0030769231,0.0225625,0.009921671,0.0122265122,0.0134529148,1.0,0.1675728062
1.2.3.2.1.2-12,A3720,"Fuel oil commissioning - Inspection of Fuel oil System",7112,"CCGTD1_IPS",TT_Task,"60068",-,-,-,100,TK_Complete,01/06/2021,21/04/2021,07/06/2021,21/04/2021,"A3710 FS","A3710","A3730 FS","A3730",304,335,305,335,71,78,71,78,96,,"CCGT D1_Integrated Programme Schedule;(OEM) Commissioning;HC - Hot Commissioing;Prepare Handover for TB2 Outage;Start F/ Oil Commissioning;Contractual Fuel Oil Commissioning and Performance testing Duration (36Days)",1,1,0.0000149054,0.0036622584,0.004069176,6,1.0,0.0004902041,0.0068493151,0.0030769231,0.0225,0.0093994778,0.0128700129,0.0134529148,1.0,0.1675728062
1.2.3.2.1.2-13,A3730,"Fuel oil commissioning - Start-up optimisation - high load transfer testing",7112,"CCGTD1_IPS",TT_Task,"60068",-,-,-,100,TK_Complete,01/06/2021,22/04/2021,07/06/2021,23/04/2021,"A3720 FS","A3720","A3740 FS","A3740",304,335,305,336,71,78,71,78,96,,"CCGT D1_Integrated Programme Schedule;(OEM) Commissioning;HC - Hot Commissioing;Prepare Handover for TB2 Outage;Start F/ Oil Commissioning;Contractual Fuel Oil Commissioning and Performance testing Duration (36Days)",1,1,0.0000147812,0.0034587996,0.0042726348,6,1.0,0.0004902041,0.0068493151,0.0030769231,0.0223125,0.0088772846,0.0135135135,0.0134529148,1.0,0.1675728062
1.2.3.2.1.2-14,A3740,"Fuel oil commissioning - GT Fuel Gas Baseload operation and automatic changeover to fuel oil operation",7112,"CCGTD1_IPS",TT_Task,"60068",-,-,-,100,TK_Complete,01/06/2021,24/04/2021,07/06/2021,26/04/2021,"A3730 FS","A3730","A3750 FS","A3750",304,336,305,336,71,78,71,78,97,,"CCGT D1_Integrated Programme Schedule;(OEM) Commissioning;HC - Hot Commissioing;Prepare Handover for TB2 Outage;Start F/ Oil Commissioning;Contractual Fuel Oil Commissioning and Performance testing Duration (36Days)",1,1,0.0000145742,0.0032553408,0.0044760936,6,1.0,0.0004902041,0.0068493151,0.0030769231,0.022,0.0083550914,0.0141570142,0.0134529148,1.0,0.1675728062
1.2.3.2.1.2-15,A3700,"Fuel oil commissioning - Change over testing @ 70%",7112,"CCGTD1_IPS",TT_Task,"60068",-,-,-,100,TK_Complete,01/06/2021,19/04/2021,07/06/2021,19/04/2021,"A3690 FS","A3690","A3710 FS","A3710",304,335,305,335,71,78,71,78,97,,"CCGT D1_Integrated Programme Schedule;(OEM) Commissioning;HC - Hot Commissioing;Prepare Handover for TB2 Outage;Start F/ Oil Commissioning;Contractual Fuel Oil Commissioning and Performance testing Duration (36Days)",1,1,0.0000149054,0.004069176,0.0036622584,6,1.0,0.0004902041,0.0068493151,0.0030769231,0.0225,0.0104438642,0.0115830116,0.0134529148,1.0,0.1675728062
1.2.3.2.1.2-16,A3750,"Fuel oil commissioning - Unit Start up and loading to baseload",7112,"CCGTD1_IPS",TT_Task,"60068",-,-,-,100,TK_Complete,01/06/2021,27/04/2021,07/06/2021,27/04/2021,"A3740 FS","A3740","A3760 FS","A3760",304,336,305,336,71,78,71,78,97,,"CCGT D1_Integrated Programme Schedule;(OEM) Commissioning;HC - Hot Commissioing;Prepare Handover for TB2 Outage;Start F/ Oil Commissioning;Contractual Fuel Oil Commissioning and Performance testing Duration (36Days)",1,1,0.0000142843,0.003051882,0.0046795524,6,1.0,0.0004902041,0.0068493151,0.0030769231,0.0215625,0.0078328982,0.0148005148,0.0134529148,1.0,0.1675728062
1.2.3.2.1.2-17,A3760,"Fuel oil commissioning - Phase - C 910 Automatic Start-up of the unit with secondary fuel",7112,"CCGTD1_IPS",TT_Task,"60068",-,-,-,100,TK_Complete,01/06/2021,28/04/2021,07/06/2021,28/04/2021,"A3750 FS","A3750","A3770 FS","A3770",304,336,305,336,71,78,71,78,97,,"CCGT D1_Integrated Programme Schedule;(OEM) Commissioning;HC - Hot Commissioing;Prepare Handover for TB2 Outage;Start F/ Oil Commissioning;Contractual Fuel Oil Commissioning and Performance testing Duration (36Days)",1,1,0.0000139117,0.0028484232,0.0048830112,6,1.0,0.0004902041,0.0068493151,0.0030769231,0.021,0.007310705,0.0154440154,0.0134529148,1.0,0.1675728062
1.2.3.2.1.2-18,A3770,"Fuel oil commissioning - Phase - C 932 Load change rates of unit with secondary fuel",7112,"CCGTD1_IPS",TT_Task,"60068",-,-,-,100,TK_Complete,01/06/2021,29/04/2021,07/06/2021,29/04/2021,"A3760 FS","A3760","A3780 FS","A3780",304,336,305,336,71,78,71,78,97,,"CCGT D1_Integrated Programme Schedule;(OEM) Commissioning;HC - Hot Commissioing;Prepare Handover for TB2 Outage;Start F/ Oil Commissioning;Contractual Fuel Oil Commissioning and Performance testing Duration (36Days)",1,1,0.0000134563,0.0026449644,0.00508647,6,1.0,0.0004902041,0.0068493151,0.0030769231,0.0203125,0.0067885117,0.0160875161,0.0134529148,1.0,0.1675728062
1.2.3.2.1.2-19,A3780,"Fuel oil commissioning - Phase - C 966 Fuel changeover in combined cycle mode",7112,"CCGTD1_IPS",TT_Task,"60068",-,-,-,100,TK_Complete,01/06/2021,30/04/2021,07/06/2021,30/04/2021,"A3770 FS","A3770","A3790 FS","A3790",304,337,305,337,71,78,71,78,97,,"CCGT D1_Integrated Programme Schedule;(OEM) Commissioning;HC - Hot Commissioing;Prepare Handover for TB2 Outage;Start F/ Oil Commissioning;Contractual Fuel Oil Commissioning and Performance testing Duration (36Days)",1,1,0.000012918,0.0024415056,0.0052899288,6,1.0,0.0004902041,0.0068493151,0.0030769231,0.0195,0.0062663185,0.0167310167,0.0134529148,1.0,0.1675728062
1.2.3.2.1.2-20,A3790,"Fuel oil commissioning - Unit Shutdown",7112,"CCGTD1_IPS",TT_Task,"60068",-,-,-,100,TK_Complete,01/06/2021,01/05/2021,07/06/2021,01/05/2021,"A3780 FS","A3780","A3800 FS","A3800",304,337,305,337,71,78,71,78,97,,"CCGT D1_Integrated Programme Schedule;(OEM) Commissioning;HC - Hot Commissioing;Prepare Handover for TB2 Outage;Start F/ Oil Commissioning;Contractual Fuel Oil Commissioning and Performance testing Duration (36Days)",1,1,0.000012297,0.0022380468,0.0054933876,6,1.0,0.0004902041,0.0068493151,0.0030769231,0.0185625,0.0057441253,0.0173745174,0.0134529148,1.0,0.1675728062
1.2.3.2.1.2-21,A3800,"Fuel oil commissioning - Phase - C 910 Automatic Start-up of the unit with secondary fuel",7112,"CCGTD1_IPS",TT_Task,"60068",-,-,-,100,TK_Complete,01/06/2021,02/05/2021,07/06/2021,02/05/2021,"A3790 FS","A3790","A3810 FS","A3810",304,337,305,337,71,78,71,78,97,,"CCGT D1_Integrated Programme Schedule;(OEM) Commissioning;HC - Hot Commissioing;Prepare Handover for TB2 Outage;Start F/ Oil Commissioning;Contractual Fuel Oil Commissioning and Performance testing Duration (36Days)",1,1,0.0000115931,0.002034588,0.0056968464,6,1.0,0.0004902041,0.0068493151,0.0030769231,0.0175,0.0052219321,0.018018018,0.0134529148,1.0,0.1675728062
1.2.3.2.1.2-22,A3810,"Fuel oil commissioning - Phase - C 932 Load change rates of unit with secondary fuel",7112,"CCGTD1_IPS",TT_Task,"60068",-,-,-,100,TK_Complete,01/06/2021,03/05/2021,07/06/2021,03/05/2021,"A3800 FS","A3800","A3820 FS","A3820",304,337,305,337,71,78,71,78,97,,"CCGT D1_Integrated Programme Schedule;(OEM) Commissioning;HC - Hot Commissioing;Prepare Handover for TB2 Outage;Start F/ Oil Commissioning;Contractual Fuel Oil Commissioning and Performance testing Duration (36Days)",1,1,0.0000108064,0.0018311292,0.0059003052,6,1.0,0.0004902041,0.0068493151,0.0030769231,0.0163125,0.0046997389,0.0186615187,0.0134529148,1.0,0.1675728062
1.2.3.2.1.2-23,A3820,"Fuel oil commissioning - Phase - C 966 Fuel changeover in combined cycle mode",7112,"CCGTD1_IPS",TT_Task,"60068",-,-,-,100,TK_Complete,01/06/2021,04/05/2021,07/06/2021,04/05/2021,"A3810 FS","A3810","A3830 FS","A3830",304,337,305,337,71,78,71,78,97,,"CCGT D1_Integrated Programme Schedule;(OEM) Commissioning;HC - Hot Commissioing;Prepare Handover for TB2 Outage;Start F/ Oil Commissioning;Contractual Fuel Oil Commissioning and Performance testing Duration (36Days)",1,1,0.0000099369,0.0016276704,0.006103764,6,1.0,0.0004902041,0.0068493151,0.0030769231,0.015,0.0041775457,0.0193050193,0.0134529148,1.0,0.1675728062
1.2.3.2.1.2-24,A3830,"Performance Test on Oil - Phase - C 956 maximum caoacity of the unit with secondary fuel",7112,"CCGTD1_IPS",TT_Task,"60068",-,-,-,100,TK_Complete,01/06/2021,05/05/2021,07/06/2021,06/05/2021,"A3820 FS","A3820","A3840 FS","A3840",304,337,305,337,71,78,71,78,97,,"CCGT D1_Integrated Programme Schedule;(OEM) Commissioning;HC - Hot Commissioing;Prepare Handover for TB2 Outage;Start F/ Oil Commissioning;Contractual Fuel Oil Commissioning and Performance testing Duration (36Days)",1,1,0.0000089846,0.0014242116,0.0063072228,6,1.0,0.0004902041,0.0068493151,0.0030769231,0.0135625,0.0036553525,0.0199485199,0.0134529148,1.0,0.1675728062
1.2.3.2.1.2-25,A3840,"S/D outage - PT and FO Burner Removal",7112,"CCGTD1_IPS",TT_Task,"60068",-,-,-,100,TK_Complete,01/06/2021,07/05/2021,07/06/2021,10/05/2021,"A3830 FS","A3830","A3850 FS","A3850",304,338,305,338,71,78,71,78,97,,"CCGT D1_Integrated Programme Schedule;(OEM) Commissioning;HC - Hot Commissioing;Prepare Handover for TB2 Outage;Start F/ Oil Commissioning;Contractual Fuel Oil Commissioning and Performance testing Duration (36Days)",1,1,0.0000079496,0.0012207528,0.0065106816,6,1.0,0.0004902041,0.0068493151,0.0030769231,0.012,0.0031331593,0.0205920206,0.0134529148,1.0,0.1675728062
1.2.3.2.1.2-26,A3850,"S/U for PT - Fuel Oil Performance Testing (@100%)",7112,"CCGTD1_IPS",TT_Task,"60068",-,-,-,100,TK_Complete,01/06/2021,11/05/2021,07/06/2021,11/05/2021,"A3840 FS","A3840","A3860 FS","A3860",304,338,305,338,71,79,71,79,97,,"CCGT D1_Integrated Programme Schedule;(OEM) Commissioning;HC - Hot Commissioing;Prepare Handover for TB2 Outage;Start F/ Oil Commissioning;Contractual Fuel Oil Commissioning and Performance testing Duration (36Days)",1,1,0.0000068316,0.001017294,0.0067141404,6,1.0,0.0004902041,0.0068493151,0.0030769231,0.0103125,0.0026109661,0.0212355212,0.0134529148,1.0,0.1675728062
1.2.3.2.1.2-27,A3860,"Restart of Unit - Start SCR RTR - Phase 2",7112,"CCGTD1_IPS",TT_Task,"60068",-,-,-,100,TK_Complete,01/06/2021,12/05/2021,07/06/2021,12/05/2021,"A3850 FS","A3850","A3870 FS","A3870",304,338,305,338,71,79,71,79,97,,"CCGT D1_Integrated Programme Schedule;(OEM) Commissioning;HC - Hot Commissioing;Prepare Handover for TB2 Outage;Start F/ Oil Commissioning;Contractual Fuel Oil Commissioning and Performance testing Duration (36Days)",1,1,0.0000056309,0.0008138352,0.0069175992,6,1.0,0.0004902041,0.0068493151,0.0030769231,0.0085,0.0020887728,0.0218790219,0.0134529148,1.0,0.1675728062
1.2.3.2.2,60066,"SCR Defect Rectification Wrks-14days Dur deduct fr the 90D correction period",7112,"CCGTD1_IPS",WBS,"60063",,,,100,Complete,01/06/2021,24/03/2021,07/06/2021,06/04/2021,,,,,304,331,305,333,71,77,71,77,,,"CCGT D1_Integrated Programme Schedule;(OEM) Commissioning;HC - Hot Commissioing;Prepare Handover for TB2 Outage"
1.2.3.2.2-1,A3560,"Unit Start -up Verification on fuel gas operation incl initial testing of SCR System",7112,"CCGTD1_IPS",TT_Task,"60066",-,-,-,100,TK_Complete,01/06/2021,24/03/2021,07/06/2021,24/03/2021,"A3550 FS","A3550","A3570 FS,S1165 SS","A3570,S1165",304,331,305,331,71,77,71,77,96,,"CCGT D1_Integrated Programme Schedule;(OEM) Commissioning;HC - Hot Commissioing;Prepare Handover for TB2 Outage;SCR Defect Rectification Wrks-14days Dur deduct fr the 90D correction period",1,1,0.0000056309,0.0069175992,0.0008138352,6,1.0,0.0003021254,0.0068493151,0.0030769231,0.0085,0.0177545692,0.0025740026,0.0134529148,1.0,0.0905078876
1.2.3.2.2-2,A3570,"SCR Testing",7112,"CCGTD1_IPS",TT_Task,"60066",-,-,-,100,TK_Complete,01/06/2021,25/03/2021,07/06/2021,29/03/2021,"A3560 FS","A3560","A3580 FS","A3580",304,331,305,332,71,77,71,77,96,,"CCGT D1_Integrated Programme Schedule;(OEM) Commissioning;HC - Hot Commissioing;Prepare Handover for TB2 Outage;SCR Defect Rectification Wrks-14days Dur deduct fr the 90D correction period",1,1,0.0000068316,0.0067141404,0.001017294,6,1.0,0.000338598,0.0068493151,0.0030769231,0.0103125,0.017232376,0.0032175032,0.0134529148,1.0,0.1054524737
1.2.3.2.2-3,A3580,"SCR Testing -RTR Phase 1-  Fuel Gas emissions (Nox & NH3) and noise testing @ HRSG (with plant instrumentation)",7112,"CCGTD1_IPS",TT_Task,"60066",-,-,-,100,TK_Complete,01/06/2021,30/03/2021,07/06/2021,30/03/2021,"A3570 FS","A3570","A3590 FS","A3590",304,332,305,332,71,77,71,77,96,,"CCGT D1_Integrated Programme Schedule;(OEM) Commissioning;HC - Hot Commissioing;Prepare Handover for TB2 Outage;SCR Defect Rectification Wrks-14days Dur deduct fr the 90D correction period",1,1,0.0000079496,0.0065106816,0.0012207528,6,1.0,0.0003696143,0.0068493151,0.0030769231,0.012,0.0167101828,0.0038610039,0.0134529148,1.0,0.1181613545
1.2.3.2.2-4,A3590,"SCR Testing - RTR Phase 1",7112,"CCGTD1_IPS",TT_Task,"60066",-,-,-,100,TK_Complete,01/06/2021,31/03/2021,07/06/2021,06/04/2021,"A3580 FS","A3580","A3600 FS,S1165 FF","A3600,S1165",304,332,305,333,71,77,71,77,96,,"CCGT D1_Integrated Programme Schedule;(OEM) Commissioning;HC - Hot Commissioing;Prepare Handover for TB2 Outage;SCR Defect Rectification Wrks-14days Dur deduct fr the 90D correction period",1,1,0.0000089846,0.0063072228,0.0014242116,6,1.0,0.000396007,0.0068493151,0.0030769231,0.0135625,0.0161879896,0.0045045045,0.0134529148,1.0,0.1289756874
1.2.3.2.3,60065,"LD's for Outage Completion delays",7112,"CCGTD1_IPS",WBS,"60063",,,,,NotStart,,,,,,,,,,,,,,,,,,,"CCGT D1_Integrated Programme Schedule;(OEM) Commissioning;HC - Hot Commissioing;Prepare Handover for TB2 Outage"
1.2.3.2.4,60064,"TB2 Blade Rectification Works Outage = Access Date + 30Days",7112,"CCGTD1_IPS",WBS,"60063",,,,100,Complete,01/06/2021,22/02/2021,07/06/2021,23/03/2021,,,,,304,327,305,331,71,76,71,77,,,"CCGT D1_Integrated Programme Schedule;(OEM) Commissioning;HC - Hot Commissioing;Prepare Handover for TB2 Outage"
1.2.3.2.4-1,A3530,"TB2 Blade Rectification Works outage",7112,"CCGTD1_IPS",TT_Task,"60064",-,-,-,100,TK_Complete,01/06/2021,22/02/2021,07/06/2021,23/03/2021,"A3520 SS","A3520","A3540 FS,A4240 SS","A3540,A4240",304,327,305,331,71,76,71,77,96,,"CCGT D1_Integrated Programme Schedule;(OEM) Commissioning;HC - Hot Commissioing;Prepare Handover for TB2 Outage;TB2 Blade Rectification Works Outage = Access Date + 30Days",1,2,0.0000016148,0.0079348932,0.0002034588,6,0.0,0.0001503957,0.0068493151,0.0061538462,0.0024375,0.0203655352,0.0006435006,0.0134529148,0.0,0.0283369572
1.2.3.2.4-2,A3550,"H/O to Commissioning Team - GT TGO",7112,"CCGTD1_IPS",TT_Task,"60064",-,-,-,100,TK_Complete,01/06/2021,23/03/2021,07/06/2021,23/03/2021,"A3540 FF","A3540","A3560 FS,S1160 FF,A4250 SS","A3560,S1160,A4250",304,331,305,331,71,77,71,77,96,,"CCGT D1_Integrated Programme Schedule;(OEM) Commissioning;HC - Hot Commissioing;Prepare Handover for TB2 Outage;TB2 Blade Rectification Works Outage = Access Date + 30Days",1,2,0.0000044716,0.0073245168,0.0006103764,6,1.0,0.0002593786,0.0068493151,0.0061538462,0.00675,0.0187989556,0.0019305019,0.0134529148,1.0,0.0729924654
1.2.3.2.4-3,A3540,"GT Fuel Oil Barrel / Bucket testing",7112,"CCGTD1_IPS",TT_Task,"60064",-,-,-,100,TK_Complete,01/06/2021,14/03/2021,07/06/2021,23/03/2021,"A3530 FS","A3530","A3550 FF","A3550",304,330,305,331,71,77,71,77,96,,"CCGT D1_Integrated Programme Schedule;(OEM) Commissioning;HC - Hot Commissioing;Prepare Handover for TB2 Outage;TB2 Blade Rectification Works Outage = Access Date + 30Days",1,1,0.0000030639,0.0075279756,0.0004069176,6,0.8,0.000209244,0.0068493151,0.0030769231,0.004625,0.0193211488,0.0012870013,0.0134529148,0.8,0.0524499399
1.2.3.3,58293,"Hot Commissioning",7112,"CCGTD1_IPS",WBS,"58237",,,,100,Complete,27/01/2020,24/01/2020,01/10/2021,27/06/2021,,,,,234,271,322,345,54,63,75,80,,,"CCGT D1_Integrated Programme Schedule;(OEM) Commissioning;HC - Hot Commissioing"
1.2.3.3.1,58299,"Resume Hot Commissioning Aft Steam Blow Outage",7112,"CCGTD1_IPS",WBS,"58293",,,,100,Complete,03/03/2020,03/03/2020,01/10/2021,27/06/2021,,,,,239,276,322,345,55,64,75,80,,,"CCGT D1_Integrated Programme Schedule;(OEM) Commissioning;HC - Hot Commissioing;Hot Commissioning"
1.2.3.3.1-1,HCOM1580,"Unit on Load",7112,"CCGTD1_IPS",TT_Task,"58299",-,-,-,100,TK_Complete,01/06/2021,27/04/2020,07/06/2021,30/04/2020,"HCOM1570 FS","HCOM1570","HCOM1590 FS","HCOM1590",304,284,305,284,71,66,71,66,97,,"CCGT D1_Integrated Programme Schedule;(OEM) Commissioning;HC - Hot Commissioing;Hot Commissioning;Resume Hot Commissioning Aft Steam Blow Outage",1,1,0.000124543,0.0130213632,0.0095625636,6,1.0,0.000209244,0.0068493151,0.0030769231,0.188,0.0334203655,0.0302445302,0.0134529148,1.0,0.0524499399
1.2.3.3.1-2,HCOM1590,"Vibration trip test",7112,"CCGTD1_IPS",TT_Task,"58299",-,-,-,100,TK_Complete,01/06/2021,01/05/2020,07/06/2021,01/05/2020,"HCOM1580 FS","HCOM1580","HCOM1600 FS","HCOM1600",304,285,305,285,71,66,71,66,97,,"CCGT D1_Integrated Programme Schedule;(OEM) Commissioning;HC - Hot Commissioing;Hot Commissioning;Resume Hot Commissioning Aft Steam Blow Outage",1,1,0.0001252054,0.0128179044,0.0097660224,6,1.0,0.0002593786,0.0068493151,0.0030769231,0.189,0.0328981723,0.0308880309,0.0134529148,1.0,0.0729924654
1.2.3.3.1-3,HCOM1600,"Unit Shutdown",7112,"CCGTD1_IPS",TT_Task,"58299",-,-,-,100,TK_Complete,01/06/2021,02/05/2020,07/06/2021,03/05/2020,"HCOM1590 FS","HCOM1590","HCOM1610 FS","HCOM1610",304,285,305,285,71,66,71,66,97,,"CCGT D1_Integrated Programme Schedule;(OEM) Commissioning;HC - Hot Commissioing;Hot Commissioning;Resume Hot Commissioning Aft Steam Blow Outage",1,1,0.0001257851,0.0126144456,0.0099694812,6,1.0,0.0003021254,0.0068493151,0.0030769231,0.189875,0.0323759791,0.0315315315,0.0134529148,1.0,0.0905078876
1.2.3.3.1-4,HCOM1610,"Unit on Load",7112,"CCGTD1_IPS",TT_Task,"58299",-,-,-,100,TK_Complete,01/06/2021,04/05/2020,07/06/2021,04/05/2020,"HCOM1600 FS","HCOM1600","HCOM1620 FS","HCOM1620",304,285,305,285,71,66,71,66,97,,"CCGT D1_Integrated Programme Schedule;(OEM) Commissioning;HC - Hot Commissioing;Hot Commissioning;Resume Hot Commissioning Aft Steam Blow Outage",1,1,0.0001262819,0.0124109868,0.01017294,6,1.0,0.000338598,0.0068493151,0.0030769231,0.190625,0.0318537859,0.0321750322,0.0134529148,1.0,0.1054524737
1.2.3.3.1-5,HCOM1620,"Unit CC Base Load",7112,"CCGTD1_IPS",TT_Task,"58299",-,-,-,100,TK_Complete,01/06/2021,05/05/2020,07/06/2021,10/05/2020,"HCOM1610 FS","HCOM1610","HCOM1630 FS,HCOM1640 FS","HCOM1630,HCOM1640",304,285,305,286,71,66,71,66,97,,"CCGT D1_Integrated Programme Schedule;(OEM) Commissioning;HC - Hot Commissioing;Hot Commissioning;Resume Hot Commissioning Aft Steam Blow Outage",1,2,0.000126696,0.012207528,0.0103763988,6,1.0,0.0003696143,0.0068493151,0.0061538462,0.19125,0.0313315927,0.0328185328,0.0134529148,1.0,0.1181613545
1.2.3.3.1-6,HCOM1630,"Unit Trip @ 16 MW",7112,"CCGTD1_IPS",TT_Task,"58299",-,-,-,100,TK_Complete,01/06/2021,11/05/2020,07/06/2021,11/05/2020,"HCOM1620 FS","HCOM1620","HCOM1650 FS","HCOM1650",304,286,305,286,71,66,71,66,97,,"CCGT D1_Integrated Programme Schedule;(OEM) Commissioning;HC - Hot Commissioing;Hot Commissioning;Resume Hot Commissioning Aft Steam Blow Outage",1,1,0.0000624371,0.0118006104,0.0105798576,6,1.0,0.0002386228,0.0068493151,0.0030769231,0.09425,0.0302872063,0.0334620335,0.0134529148,1.0,0.0644878437
1.2.3.3.1-7,HCOM1640,"Unit CC Base Load",7112,"CCGTD1_IPS",TT_Task,"58299",-,-,-,100,TK_Complete,01/06/2021,11/05/2020,07/06/2021,12/05/2020,"HCOM1620 FS","HCOM1620","HCOM1650 FS","HCOM1650",304,286,305,286,71,66,71,66,97,,"CCGT D1_Integrated Programme Schedule;(OEM) Commissioning;HC - Hot Commissioing;Hot Commissioning;Resume Hot Commissioning Aft Steam Blow Outage",1,1,0.0000624371,0.0118006104,0.0105798576,6,1.0,0.0002386228,0.0068493151,0.0030769231,0.09425,0.0302872063,0.0334620335,0.0134529148,1.0,0.0644878437
1.2.3.3.1-8,HCOM1650,"Shut down outage for FSD Inspection",7112,"CCGTD1_IPS",TT_Task,"58299",-,-,-,100,TK_Complete,01/06/2021,13/05/2020,07/06/2021,04/06/2020,"HCOM1640 FS,HCOM1630 FS","HCOM1640,HCOM1630","HCOM1660 FS","HCOM1660",304,286,305,289,71,66,71,67,97,,"CCGT D1_Integrated Programme Schedule;(OEM) Commissioning;HC - Hot Commissioing;Hot Commissioning;Resume Hot Commissioning Aft Steam Blow Outage",2,1,0.0001274412,0.0115971516,0.0109867752,6,0.0,0.0004877416,0.0136986301,0.0030769231,0.192375,0.0297650131,0.0347490347,0.0134529148,0.0,0.1665637708
1.2.3.3.1-9,HCOM1660,"Fuel Gas Line flushing Outage (Flushing cleaning I/P)",7112,"CCGTD1_IPS",TT_Task,"58299",-,-,-,100,TK_Complete,01/06/2021,05/06/2020,07/06/2021,14/06/2020,"HCOM1650 FS","HCOM1650","HCOM1670 FS","HCOM1670",304,290,305,291,71,67,71,67,97,,"CCGT D1_Integrated Programme Schedule;(OEM) Commissioning;HC - Hot Commissioing;Hot Commissioning;Resume Hot Commissioning Aft Steam Blow Outage",1,1,0.000127524,0.0113936928,0.011190234,6,0.6,0.0004972955,0.0068493151,0.0030769231,0.1925,0.0292428198,0.0353925354,0.0134529148,0.6,0.1704784958
1.2.3.3.1-10,HCOM1670,"Cold start / Load / shutdown",7112,"CCGTD1_IPS",TT_Task,"58299",-,-,-,100,TK_Complete,01/06/2021,15/06/2020,07/06/2021,15/06/2020,"HCOM1660 FS","HCOM1660","HCOM1680 FS","HCOM1680",304,291,305,291,71,68,71,68,97,,"CCGT D1_Integrated Programme Schedule;(OEM) Commissioning;HC - Hot Commissioing;Hot Commissioning;Resume Hot Commissioning Aft Steam Blow Outage",1,1,0.000127524,0.011190234,0.0113936928,6,1.0,0.0005062981,0.0068493151,0.0030769231,0.1925,0.0287206266,0.036036036,0.0134529148,1.0,0.1741672893
1.2.3.3.1-11,HCOM1680,"Hot start / Load / SCR system testing / shutdown",7112,"CCGTD1_IPS",TT_Task,"58299",-,-,-,100,TK_Complete,01/06/2021,16/06/2020,07/06/2021,17/06/2020,"HCOM1670 FS","HCOM1670","HCOM1690 FS","HCOM1690",304,291,305,291,71,68,71,68,97,,"CCGT D1_Integrated Programme Schedule;(OEM) Commissioning;HC - Hot Commissioing;Hot Commissioning;Resume Hot Commissioning Aft Steam Blow Outage",1,1,0.0001274412,0.0109867752,0.0115971516,6,1.0,0.0005329509,0.0068493151,0.0030769231,0.192375,0.0281984334,0.0366795367,0.0134529148,1.0,0.1850882284
1.2.3.3.1-12,HCOM1690,"Shutdown (GT Offline Washing )",7112,"CCGTD1_IPS",TT_Task,"58299",-,-,-,100,TK_Complete,01/06/2021,18/06/2020,07/06/2021,18/06/2020,"HCOM1680 FS","HCOM1680","HCOM1700 FS","HCOM1700",304,291,305,291,71,68,71,68,97,,"CCGT D1_Integrated Programme Schedule;(OEM) Commissioning;HC - Hot Commissioing;Hot Commissioning;Resume Hot Commissioning Aft Steam Blow Outage",1,1,0.0001272756,0.0107833164,0.0118006104,6,1.0,0.0005266768,0.0068493151,0.0030769231,0.192125,0.0276762402,0.0373230373,0.0134529148,1.0,0.1825173923
1.2.3.3.1-13,HCOM1700,"Offline washing / Warm start / Trip test/ Hot start/ Shutdown",7112,"CCGTD1_IPS",TT_Task,"58299",-,-,-,100,TK_Complete,27/09/2021,19/06/2020,01/10/2021,19/06/2020,"HCOM1690 FS","HCOM1690","HCOM1710 FS","HCOM1710",321,292,322,292,75,68,75,68,99,,"CCGT D1_Integrated Programme Schedule;(OEM) Commissioning;HC - Hot Commissioing;Hot Commissioning;Resume Hot Commissioning Aft Steam Blow Outage",1,1,0.0001270272,0.0105798576,0.0120040692,4,1.0,0.0005212205,0.0068493151,0.0030769231,0.19175,0.027154047,0.037966538,0.0089686099,1.0,0.1802816871
1.2.3.3.1-14,HCOM1710,"Hot start / shutdown / Hot start on the fly",7112,"CCGTD1_IPS",TT_Task,"58299",-,-,-,100,TK_Complete,27/09/2021,20/06/2020,01/10/2021,20/06/2020,"HCOM1700 FS","HCOM1700","HCOM1720 FS","HCOM1720",321,292,322,292,75,68,75,68,99,,"CCGT D1_Integrated Programme Schedule;(OEM) Commissioning;HC - Hot Commissioing;Hot Commissioning;Resume Hot Commissioning Aft Steam Blow Outage",1,1,0.000126696,0.0103763988,0.012207528,4,1.0,0.0005165968,0.0068493151,0.0030769231,0.19125,0.0266318538,0.0386100386,0.0089686099,1.0,0.1783871391
1.2.3.3.1-15,HCOM1720,"Unit on Load / shutdown",7112,"CCGTD1_IPS",TT_Task,"58299",-,-,-,100,TK_Complete,27/09/2021,21/06/2020,01/10/2021,21/06/2020,"HCOM1710 FS","HCOM1710","HCOM1730 FS","HCOM1730",321,292,322,292,75,68,75,68,99,,"CCGT D1_Integrated Programme Schedule;(OEM) Commissioning;HC - Hot Commissioing;Hot Commissioning;Resume Hot Commissioning Aft Steam Blow Outage",1,1,0.0001262819,0.01017294,0.0124109868,4,1.0,0.0005127817,0.0068493151,0.0030769231,0.190625,0.0261096606,0.0392535393,0.0089686099,1.0,0.1768239324
1.2.3.3.1-16,HCOM1730,"Hot start/ Unit on Load",7112,"CCGTD1_IPS",TT_Task,"58299",-,-,-,100,TK_Complete,27/09/2021,22/06/2020,01/10/2021,22/06/2020,"HCOM1720 FS","HCOM1720","HCOM1740 FS","HCOM1740",321,292,322,292,75,68,75,68,99,,"CCGT D1_Integrated Programme Schedule;(OEM) Commissioning;HC - Hot Commissioing;Hot Commissioning;Resume Hot Commissioning Aft Steam Blow Outage",1,1,0.0001257851,0.0099694812,0.0126144456,4,1.0,0.0005100668,0.0068493151,0.0030769231,0.189875,0.0255874674,0.0398970399,0.0089686099,1.0,0.1757115056
1.2.3.3.1-17,HCOM1740,"Unit Minimum Load Operation",7112,"CCGTD1_IPS",TT_Task,"58299",-,-,-,100,TK_Complete,27/09/2021,23/06/2020,01/10/2021,23/06/2020,"HCOM1730 FS","HCOM1730","HCOM1750 FS","HCOM1750",321,292,322,292,75,68,75,68,99,,"CCGT D1_Integrated Programme Schedule;(OEM) Commissioning;HC - Hot Commissioing;Hot Commissioning;Resume Hot Commissioning Aft Steam Blow Outage",1,1,0.0001252054,0.0097660224,0.0128179044,4,1.0,0.0005079205,0.0068493151,0.0030769231,0.189,0.0250652742,0.0405405405,0.0089686099,1.0,0.174832057
1.2.3.3.1-18,HCOM1750,"Unit on Load / Excitation Test",7112,"CCGTD1_IPS",TT_Task,"58299",-,-,-,100,TK_Complete,27/09/2021,24/06/2020,01/10/2021,24/06/2020,"HCOM1740 FS","HCOM1740","HCOM1760 FS","HCOM1760",321,292,322,292,75,68,75,68,99,,"CCGT D1_Integrated Programme Schedule;(OEM) Commissioning;HC - Hot Commissioing;Hot Commissioning;Resume Hot Commissioning Aft Steam Blow Outage",1,1,0.000124543,0.0095625636,0.0130213632,4,1.0,0.0005242447,0.0068493151,0.0030769231,0.188,0.0245430809,0.0411840412,0.0089686099,1.0,0.1815208486
1.2.3.3.1-19,HCOM1760,"Unit on Load / Emergency Shutdown (FF Ring main water leak inside turbine hall)",7112,"CCGTD1_IPS",TT_Task,"58299",-,-,-,100,TK_Complete,27/09/2021,25/06/2020,01/10/2021,26/06/2020,"HCOM1750 FS","HCOM1750","HCOM1770 FS","HCOM1770",321,292,322,293,75,68,75,68,99,,"CCGT D1_Integrated Programme Schedule;(OEM) Commissioning;HC - Hot Commissioing;Hot Commissioning;Resume Hot Commissioning Aft Steam Blow Outage",1,1,0.0001237977,0.0093591048,0.013224822,4,1.0,0.0004902041,0.0068493151,0.0030769231,0.186875,0.0240208877,0.0418275418,0.0089686099,1.0,0.1675728062
1.2.3.3.1-20,HCOM1770,"Warm Test / Excitation Test",7112,"CCGTD1_IPS",TT_Task,"58299",-,-,-,100,TK_Complete,27/09/2021,27/06/2020,01/10/2021,27/06/2020,"HCOM1760 FS","HCOM1760","HCOM1780 FS","HCOM1780",321,293,322,293,75,68,75,68,99,,"CCGT D1_Integrated Programme Schedule;(OEM) Commissioning;HC - Hot Commissioing;Hot Commissioning;Resume Hot Commissioning Aft Steam Blow Outage",1,1,0.0001229696,0.009155646,0.0134282808,4,1.0,0.0004902041,0.0068493151,0.0030769231,0.185625,0.0234986945,0.0424710425,0.0089686099,1.0,0.1675728062
1.2.3.3.1-21,HCOM1780,"Unit on Load / Excitation test/ SCR Load Testing",7112,"CCGTD1_IPS",TT_Task,"58299",-,-,-,100,TK_Complete,27/09/2021,28/06/2020,01/10/2021,28/06/2020,"HCOM1770 FS","HCOM1770","HCOM1790 FS","HCOM1790",321,293,322,293,75,68,75,68,99,,"CCGT D1_Integrated Programme Schedule;(OEM) Commissioning;HC - Hot Commissioing;Hot Commissioning;Resume Hot Commissioning Aft Steam Blow Outage",1,1,0.0001220587,0.0089521872,0.0136317396,4,1.0,0.0004902041,0.0068493151,0.0030769231,0.18425,0.0229765013,0.0431145431,0.0089686099,1.0,0.1675728062
1.2.3.3.1-22,HCOM1790,"Load / SCR Load Testing",7112,"CCGTD1_IPS",TT_Task,"58299",-,-,-,100,TK_Complete,27/09/2021,29/06/2020,01/10/2021,01/07/2020,"HCOM1780 FS","HCOM1780","HCOM1800 FS,HCOM1810 FS","HCOM1800,HCOM1810",321,293,322,293,75,68,75,68,99,,"CCGT D1_Integrated Programme Schedule;(OEM) Commissioning;HC - Hot Commissioing;Hot Commissioning;Resume Hot Commissioning Aft Steam Blow Outage",1,2,0.000121065,0.0087487284,0.0138351984,4,1.0,0.0004902041,0.0068493151,0.0061538462,0.18275,0.0224543081,0.0437580438,0.0089686099,1.0,0.1675728062
1.2.3.3.1-23,HCOM1800,"SCR Load Testing",7112,"CCGTD1_IPS",TT_Task,"58299",-,-,-,100,TK_Complete,27/09/2021,02/07/2020,01/10/2021,02/07/2020,"HCOM1790 FS","HCOM1790","HCOM1810 FF","HCOM1810",321,293,322,293,75,68,75,68,99,,"CCGT D1_Integrated Programme Schedule;(OEM) Commissioning;HC - Hot Commissioing;Hot Commissioning;Resume Hot Commissioning Aft Steam Blow Outage",1,1,0.0,0.0085452696,0.0140386572,4,1.0,0.0002857214,0.0068493151,0.0030769231,0.0,0.0219321149,0.0444015444,0.0089686099,1.0,0.0837864031
1.2.3.3.1-24,HCOM1810,"Shutdown",7112,"CCGTD1_IPS",TT_Task,"58299",-,-,-,100,TK_Complete,27/09/2021,02/07/2020,01/10/2021,02/07/2020,"HCOM1790 FS,HCOM1800 FF","HCOM1790,HCOM1800","HCOM1820 FS","HCOM1820",321,293,322,293,75,68,75,68,99,,"CCGT D1_Integrated Programme Schedule;(OEM) Commissioning;HC - Hot Commissioing;Hot Commissioning;Resume Hot Commissioning Aft Steam Blow Outage",2,1,0.0001188292,0.0083418108,0.014242116,4,1.0,0.0005247827,0.0136986301,0.0030769231,0.179375,0.0214099217,0.045045045,0.0089686099,1.0,0.1817412848
1.2.3.3.1-25,HCOM1820,"Automatic Hot Start on the Fly and verification of SCR system",7112,"CCGTD1_IPS",TT_Task,"58299",-,-,-,100,TK_Complete,27/09/2021,03/07/2020,01/10/2021,03/07/2020,"HCOM1810 FS","HCOM1810","HCOM1830 FS","HCOM1830",321,294,322,294,75,68,75,68,99,,"CCGT D1_Integrated Programme Schedule;(OEM) Commissioning;HC - Hot Commissioing;Hot Commissioning;Resume Hot Commissioning Aft Steam Blow Outage",1,1,0.0001175871,0.008138352,0.0144455748,4,1.0,0.0005196283,0.0068493151,0.0030769231,0.1775,0.0208877285,0.0456885457,0.0089686099,1.0,0.1796292976
1.2.3.3.1-26,HCOM1830,"Unit on Load / Emissiong QAL2 Test",7112,"CCGTD1_IPS",TT_Task,"58299",-,-,-,100,TK_Complete,27/09/2021,04/07/2020,01/10/2021,04/07/2020,"HCOM1820 FS","HCOM1820","HCOM1840 FS","HCOM1840",321,294,322,294,75,68,75,68,99,,"CCGT D1_Integrated Programme Schedule;(OEM) Commissioning;HC - Hot Commissioing;Hot Commissioning;Resume Hot Commissioning Aft Steam Blow Outage",1,1,0.0001162622,0.0079348932,0.0146490336,4,1.0,0.0005152714,0.0068493151,0.0030769231,0.1755,0.0203655352,0.0463320463,0.0089686099,1.0,0.1778440689
1.2.3.3.1-27,HCOM1840,"Unit on Load / Emissiong QAL2 Test / Operational Reliability test Running",7112,"CCGTD1_IPS",TT_Task,"58299",-,-,-,100,TK_Complete,27/09/2021,05/07/2020,01/10/2021,07/07/2020,"HCOM1830 FS","HCOM1830","HCOM1850 FS","HCOM1850",321,294,322,294,75,68,75,68,99,,"CCGT D1_Integrated Programme Schedule;(OEM) Commissioning;HC - Hot Commissioing;Hot Commissioning;Resume Hot Commissioning Aft Steam Blow Outage",1,1,0.0001148544,0.0077314344,0.0148524924,4,1.0,0.0005115775,0.0068493151,0.0030769231,0.173375,0.019843342,0.046975547,0.0089686099,1.0,0.1763305173
1.2.3.3.1-28,HCOM1850,"shutdown for defect clearance before contractual RTR",7112,"CCGTD1_IPS",TT_Task,"58299",-,-,-,100,TK_Complete,27/09/2021,08/07/2020,01/10/2021,10/07/2020,"HCOM1840 FS","HCOM1840","HCOM1860 FS","HCOM1860",321,294,322,295,75,68,75,68,99,,"CCGT D1_Integrated Programme Schedule;(OEM) Commissioning;HC - Hot Commissioing;Hot Commissioning;Resume Hot Commissioning Aft Steam Blow Outage",1,1,0.0001133639,0.0075279756,0.0150559512,4,1.0,0.0005084405,0.0068493151,0.0030769231,0.171125,0.0193211488,0.0476190476,0.0089686099,1.0,0.1750450992
1.2.3.3.1-29,HCOM1860,"Cold Start / Load",7112,"CCGTD1_IPS",TT_Task,"58299",-,-,-,100,TK_Complete,27/09/2021,11/07/2020,01/10/2021,11/07/2020,"HCOM1850 FS","HCOM1850","HCOM1870 FS","HCOM1870",321,295,322,295,75,68,75,68,99,,"CCGT D1_Integrated Programme Schedule;(OEM) Commissioning;HC - Hot Commissioing;Hot Commissioning;Resume Hot Commissioning Aft Steam Blow Outage",1,1,0.0001117905,0.0073245168,0.01525941,4,1.0,0.0005057123,0.0068493151,0.0030769231,0.16875,0.0187989556,0.0482625483,0.0089686099,1.0,0.1739272466
1.2.3.3.1-30,HCOM1870,"Unit on Load",7112,"CCGTD1_IPS",TT_Task,"58299",-,-,-,100,TK_Complete,27/09/2021,12/07/2020,01/10/2021,12/07/2020,"HCOM1860 FS","HCOM1860","HCOM1880 FS","HCOM1880",321,295,322,295,75,68,75,68,99,,"CCGT D1_Integrated Programme Schedule;(OEM) Commissioning;HC - Hot Commissioing;Hot Commissioning;Resume Hot Commissioning Aft Steam Blow Outage",1,1,0.0001101344,0.007121058,0.0154628688,4,1.0,0.0005034005,0.0068493151,0.0030769231,0.16625,0.0182767624,0.0489060489,0.0089686099,1.0,0.1729799727
1.2.3.3.1-31,HCOM1880,"Contractual Reliability test Running",7112,"CCGTD1_IPS",TT_Task,"58299",-,-,-,100,TK_Complete,27/09/2021,13/07/2020,01/10/2021,23/07/2020,"HCOM1870 FS","HCOM1870","HCOM1890 FS","HCOM1890",321,295,322,296,75,68,75,69,99,,"CCGT D1_Integrated Programme Schedule;(OEM) Commissioning;HC - Hot Commissioing;Hot Commissioning;Resume Hot Commissioning Aft Steam Blow Outage",1,1,0.0001083954,0.0069175992,0.0156663276,4,0.6,0.0005014929,0.0068493151,0.0030769231,0.163625,0.0177545692,0.0495495495,0.0089686099,0.6,0.1721983693
1.2.3.3.1-32,HCOM1890,"Forced Outage - SCR Blower failure",7112,"CCGTD1_IPS",TT_Task,"58299",-,-,-,100,TK_Complete,27/09/2021,24/07/2020,01/10/2021,25/07/2020,"HCOM1880 FS","HCOM1880","HCOM1900 FS","HCOM1900",321,297,322,297,75,69,75,69,99,,"CCGT D1_Integrated Programme Schedule;(OEM) Commissioning;HC - Hot Commissioing;Hot Commissioning;Resume Hot Commissioning Aft Steam Blow Outage",1,1,0.0001065737,0.0067141404,0.0158697864,4,1.0,0.0005001355,0.0068493151,0.0030769231,0.160875,0.017232376,0.0501930502,0.0089686099,1.0,0.1716421559
1.2.3.3.1-33,HCOM1900,"Phase 1 - Cold Start / Contractual Reliability test Running - (Start)",7112,"CCGTD1_IPS",TT_Task,"58299",-,-,-,100,TK_Complete,27/09/2021,26/07/2020,01/10/2021,26/07/2020,"HCOM1890 FS","HCOM1890","HCOM1905 FS","HCOM1905",321,297,322,297,75,69,75,69,99,,"CCGT D1_Integrated Programme Schedule;(OEM) Commissioning;HC - Hot Commissioing;Hot Commissioning;Resume Hot Commissioning Aft Steam Blow Outage",1,1,0.0001046691,0.0065106816,0.0160732452,4,1.0,0.0004990623,0.0068493151,0.0030769231,0.158,0.0167101828,0.0508365508,0.0089686099,1.0,0.1712024316
1.2.3.3.1-34,HCOM1910,"Phase 1 - Contractual Reliability test Running / AGC test",7112,"CCGTD1_IPS",TT_Task,"58299",-,-,-,100,TK_Complete,27/09/2021,29/07/2020,01/10/2021,30/07/2020,"HCOM1905 FS","HCOM1905","HCOM1920 FS","HCOM1920",321,297,322,297,75,69,75,69,99,,"CCGT D1_Integrated Programme Schedule;(OEM) Commissioning;HC - Hot Commissioing;Hot Commissioning;Resume Hot Commissioning Aft Steam Blow Outage",1,1,0.0001006115,0.006103764,0.0164801628,4,1.0,0.0004902041,0.0068493151,0.0030769231,0.151875,0.0156657963,0.0521235521,0.0089686099,1.0,0.1675728062
1.2.3.3.1-35,HCOM1920,"Phase 1 - Contractual Reliability test Running - (Complete)",7112,"CCGTD1_IPS",TT_Task,"58299",-,-,-,100,TK_Complete,27/09/2021,31/07/2020,01/10/2021,05/08/2020,"HCOM1910 FS","HCOM1910","HCOM1930 FS","HCOM1930",321,298,322,298,75,69,75,69,99,,"CCGT D1_Integrated Programme Schedule;(OEM) Commissioning;HC - Hot Commissioing;Hot Commissioning;Resume Hot Commissioning Aft Steam Blow Outage",1,1,0.0000984585,0.0059003052,0.0166836216,4,1.0,0.0004902041,0.0068493151,0.0030769231,0.148625,0.0151436031,0.0527670528,0.0089686099,1.0,0.1675728062
1.2.3.3.1-36,HCOM1930,"Phase 2 - Contractual Reliability test Running - (Start)",7112,"CCGTD1_IPS",TT_Task,"58299",-,-,-,100,TK_Complete,27/09/2021,06/08/2020,01/10/2021,12/08/2020,"HCOM1920 FS","HCOM1920","HCOM1940 FS","HCOM1940",321,298,322,299,75,69,75,69,99,,"CCGT D1_Integrated Programme Schedule;(OEM) Commissioning;HC - Hot Commissioing;Hot Commissioning;Resume Hot Commissioning Aft Steam Blow Outage",1,1,0.0000962227,0.0056968464,0.0168870804,4,0.8,0.0004902041,0.0068493151,0.0030769231,0.14525,0.0146214099,0.0534105534,0.0089686099,0.8,0.1675728062
1.2.3.3.1-37,HCOM1940,"Phase 2 - Contractual Reliability test Running / shutdown - (Complete)",7112,"CCGTD1_IPS",TT_Task,"58299",-,-,-,100,TK_Complete,27/09/2021,13/08/2020,01/10/2021,13/08/2020,"HCOM1930 FS","HCOM1930","HCOM1950 FS","HCOM1950",321,299,322,299,75,69,75,69,99,,"CCGT D1_Integrated Programme Schedule;(OEM) Commissioning;HC - Hot Commissioing;Hot Commissioning;Resume Hot Commissioning Aft Steam Blow Outage",1,1,0.0000939041,0.0054933876,0.0170905392,4,1.0,0.0004902041,0.0068493151,0.0030769231,0.14175,0.0140992167,0.0540540541,0.0089686099,1.0,0.1675728062
1.2.3.3.1-38,HCOM1950,"Shutdown - defect clearance",7112,"CCGTD1_IPS",TT_Task,"58299",-,-,-,100,TK_Complete,01/06/2021,14/08/2020,07/06/2021,15/08/2020,"HCOM1940 FS","HCOM1940","HCOM1960 FS","HCOM1960",304,300,305,300,71,70,71,70,97,,"CCGT D1_Integrated Programme Schedule;(OEM) Commissioning;HC - Hot Commissioing;Hot Commissioning;Resume Hot Commissioning Aft Steam Blow Outage",1,1,0.0000915026,0.0052899288,0.017293998,6,1.0,0.0004902041,0.0068493151,0.0030769231,0.138125,0.0135770235,0.0546975547,0.0134529148,1.0,0.1675728062
1.2.3.3.1-39,HCOM1960,"Shutdown - IGV cleaning / calibration",7112,"CCGTD1_IPS",TT_Task,"58299",-,-,-,100,TK_Complete,01/06/2021,16/08/2020,07/06/2021,16/08/2020,"HCOM1950 FS","HCOM1950","HCOM1970 FS","HCOM1970",304,300,305,300,71,70,71,70,97,,"CCGT D1_Integrated Programme Schedule;(OEM) Commissioning;HC - Hot Commissioing;Hot Commissioning;Resume Hot Commissioning Aft Steam Blow Outage",1,1,0.0000890184,0.00508647,0.0174974568,6,1.0,0.0004902041,0.0068493151,0.0030769231,0.134375,0.0130548303,0.0553410553,0.0134529148,1.0,0.1675728062
1.2.3.3.1-40,HCOM1970,"Shutdown - defect clearance",7112,"CCGTD1_IPS",TT_Task,"58299",-,-,-,100,TK_Complete,01/06/2021,17/08/2020,07/06/2021,17/08/2020,"HCOM1960 FS","HCOM1960","HCOM1980 FS","HCOM1980",304,300,305,300,71,70,71,70,97,,"CCGT D1_Integrated Programme Schedule;(OEM) Commissioning;HC - Hot Commissioing;Hot Commissioning;Resume Hot Commissioning Aft Steam Blow Outage",1,1,0.0000864514,0.0048830112,0.0177009156,6,1.0,0.0004902041,0.0068493151,0.0030769231,0.1305,0.0125326371,0.055984556,0.0134529148,1.0,0.1675728062
1.2.3.3.1-41,HCOM1980,"Phase 3 - Cold Start / Contractual Reliability test Running (Start)",7112,"CCGTD1_IPS",TT_Task,"58299",-,-,-,100,TK_Complete,01/06/2021,18/08/2020,07/06/2021,18/08/2020,"HCOM1970 FS","HCOM1970","HCOM1990 FS","HCOM1990",304,300,305,300,71,70,71,70,97,,"CCGT D1_Integrated Programme Schedule;(OEM) Commissioning;HC - Hot Commissioing;Hot Commissioning;Resume Hot Commissioning Aft Steam Blow Outage",1,1,0.0000838015,0.0046795524,0.0179043744,6,1.0,0.0004902041,0.0068493151,0.0030769231,0.1265,0.0120104439,0.0566280566,0.0134529148,1.0,0.1675728062
1.2.3.3.1-42,HCOM1990,"Phase 3 - Contractual Reliability test Running / internal Performance Test",7112,"CCGTD1_IPS",TT_Task,"58299",-,-,-,100,TK_Complete,01/06/2021,19/08/2020,07/06/2021,20/08/2020,"HCOM1980 FS","HCOM1980","HCOM2000 FS","HCOM2000",304,300,305,300,71,70,71,70,97,,"CCGT D1_Integrated Programme Schedule;(OEM) Commissioning;HC - Hot Commissioing;Hot Commissioning;Resume Hot Commissioning Aft Steam Blow Outage",1,1,0.0000810689,0.0044760936,0.0181078332,6,1.0,0.0004902041,0.0068493151,0.0030769231,0.122375,0.0114882507,0.0572715573,0.0134529148,1.0,0.1675728062
1.2.3.3.1-43,HCOM2000,"Phase 3 - Contractual Reliability test Running / Contracual Performance Test",7112,"CCGTD1_IPS",TT_Task,"58299",-,-,-,100,TK_Complete,01/06/2021,21/08/2020,07/06/2021,22/08/2020,"HCOM1990 FS","HCOM1990","HCOM2010 FS","HCOM2010",304,301,305,301,71,70,71,70,97,,"CCGT D1_Integrated Programme Schedule;(OEM) Commissioning;HC - Hot Commissioing;Hot Commissioning;Resume Hot Commissioning Aft Steam Blow Outage",1,1,0.0000782534,0.0042726348,0.018311292,6,1.0,0.0004902041,0.0068493151,0.0030769231,0.118125,0.0109660574,0.0579150579,0.0134529148,1.0,0.1675728062
1.2.3.3.1-44,HCOM2010,"Phase 3 - Contractual Reliability test Running",7112,"CCGTD1_IPS",TT_Task,"58299",-,-,-,100,TK_Complete,01/06/2021,23/08/2020,07/06/2021,27/06/2021,"HCOM2000 FS","HCOM2000","HCOM2020 FS","HCOM2020",304,301,305,345,71,70,71,80,97,,"CCGT D1_Integrated Programme Schedule;(OEM) Commissioning;HC - Hot Commissioing;Hot Commissioning;Resume Hot Commissioning Aft Steam Blow Outage",1,1,0.0000753551,0.004069176,0.0185147508,6,0.0,0.0004902041,0.0068493151,0.0030769231,0.11375,0.0104438642,0.0585585586,0.0134529148,0.0,0.1675728062
1.2.3.3.1-45,HCOM2020,"Phase 3 - Contractual Reliability test Running / shutdown (complete)",7112,"CCGTD1_IPS",TT_Task,"58299",-,-,-,100,TK_Complete,01/06/2021,28/08/2020,07/06/2021,28/08/2020,"HCOM2010 FS","HCOM2010","HCOM2030 FS","HCOM2030",304,302,305,302,71,70,71,70,97,,"CCGT D1_Integrated Programme Schedule;(OEM) Commissioning;HC - Hot Commissioing;Hot Commissioning;Resume Hot Commissioning Aft Steam Blow Outage",1,1,0.000072374,0.0038657172,0.0187182096,6,1.0,0.0004902041,0.0068493151,0.0030769231,0.10925,0.009921671,0.0592020592,0.0134529148,1.0,0.1675728062
1.2.3.3.1-46,HCOM2030,"Shutdown - defect clearance",7112,"CCGTD1_IPS",TT_Task,"58299",-,-,-,100,TK_Complete,01/06/2021,29/08/2020,07/06/2021,31/08/2020,"HCOM2020 FS","HCOM2020","HCOM2040 FS","HCOM2040",304,302,305,302,71,70,71,70,97,,"CCGT D1_Integrated Programme Schedule;(OEM) Commissioning;HC - Hot Commissioing;Hot Commissioning;Resume Hot Commissioning Aft Steam Blow Outage",1,1,0.0000693101,0.0036622584,0.0189216684,6,1.0,0.0004902041,0.0068493151,0.0030769231,0.104625,0.0093994778,0.0598455598,0.0134529148,1.0,0.1675728062
1.2.3.3.1-47,HCOM2040,"Cold start test, internal Pefromance Test @ 50%CC",7112,"CCGTD1_IPS",TT_Task,"58299",-,-,-,100,TK_Complete,01/06/2021,01/09/2020,07/06/2021,01/09/2020,"HCOM2030 FS","HCOM2030","HCOM2050 FS","HCOM2050",304,302,305,302,71,70,71,70,97,,"CCGT D1_Integrated Programme Schedule;(OEM) Commissioning;HC - Hot Commissioing;Hot Commissioning;Resume Hot Commissioning Aft Steam Blow Outage",1,1,0.0000661634,0.0034587996,0.0191251272,6,1.0,0.0004902041,0.0068493151,0.0030769231,0.099875,0.0088772846,0.0604890605,0.0134529148,1.0,0.1675728062
1.2.3.3.1-48,HCOM2050,"Hot start on YOC Gas / shutdown",7112,"CCGTD1_IPS",TT_Task,"58299",-,-,-,100,TK_Complete,01/06/2021,02/09/2020,07/06/2021,04/09/2020,"HCOM2040 FS","HCOM2040","HCOM2060 FS","HCOM2060",304,302,305,303,71,70,71,70,97,,"CCGT D1_Integrated Programme Schedule;(OEM) Commissioning;HC - Hot Commissioing;Hot Commissioning;Resume Hot Commissioning Aft Steam Blow Outage",1,1,0.0000629339,0.0032553408,0.019328586,6,1.0,0.0004902041,0.0068493151,0.0030769231,0.095,0.0083550914,0.0611325611,0.0134529148,1.0,0.1675728062
1.2.3.3.1-49,HCOM2060,"Shutdown",7112,"CCGTD1_IPS",TT_Task,"58299",-,-,-,100,TK_Complete,01/06/2021,05/09/2020,07/06/2021,05/09/2020,"HCOM2050 FS","HCOM2050","HCOM2070 FS","HCOM2070",304,303,305,303,71,70,71,70,97,,"CCGT D1_Integrated Programme Schedule;(OEM) Commissioning;HC - Hot Commissioing;Hot Commissioning;Resume Hot Commissioning Aft Steam Blow Outage",1,1,0.0000596216,0.003051882,0.0195320448,6,1.0,0.0004902041,0.0068493151,0.0030769231,0.09,0.0078328982,0.0617760618,0.0134529148,1.0,0.1675728062
1.2.3.3.1-50,HCOM2070,"Shutdown / Preparation for Performance Test",7112,"CCGTD1_IPS",TT_Task,"58299",-,-,-,100,TK_Complete,01/06/2021,06/09/2020,07/06/2021,09/09/2020,"HCOM2060 FS","HCOM2060","HCOM2080 FS","HCOM2080",304,303,305,303,71,70,71,70,97,,"CCGT D1_Integrated Programme Schedule;(OEM) Commissioning;HC - Hot Commissioing;Hot Commissioning;Resume Hot Commissioning Aft Steam Blow Outage",1,1,0.0000562265,0.0028484232,0.0197355036,6,1.0,0.0004902041,0.0068493151,0.0030769231,0.084875,0.007310705,0.0624195624,0.0134529148,1.0,0.1675728062
1.2.3.3.1-51,HCOM2080,"Shutdown",7112,"CCGTD1_IPS",TT_Task,"58299",-,-,-,100,TK_Complete,08/06/2021,10/09/2020,14/06/2021,11/09/2020,"HCOM2070 FS","HCOM2070","HCOM2090 FS","HCOM2090",305,303,306,304,71,70,71,70,98,,"CCGT D1_Integrated Programme Schedule;(OEM) Commissioning;HC - Hot Commissioing;Hot Commissioning;Resume Hot Commissioning Aft Steam Blow Outage",1,1,0.0000527486,0.0026449644,0.0199389624,6,1.0,0.0004902041,0.0068493151,0.0030769231,0.079625,0.0067885117,0.0630630631,0.0134529148,1.0,0.1675728062
1.2.3.3.1-52,HCOM2090,"Offline washing / cold start",7112,"CCGTD1_IPS",TT_Task,"58299",-,-,-,100,TK_Complete,15/06/2021,12/09/2020,21/06/2021,12/09/2020,"HCOM2080 FS","HCOM2080","HCOM2100 FS","HCOM2100",306,304,307,304,71,70,71,70,98,,"CCGT D1_Integrated Programme Schedule;(OEM) Commissioning;HC - Hot Commissioing;Hot Commissioning;Resume Hot Commissioning Aft Steam Blow Outage",1,1,0.0000491878,0.0024415056,0.0201424212,6,1.0,0.0004902041,0.0068493151,0.0030769231,0.07425,0.0062663185,0.0637065637,0.0134529148,1.0,0.1675728062
1.2.3.3.1-53,HCOM2100,"Unit on Load / internal Performance Test",7112,"CCGTD1_IPS",TT_Task,"58299",-,-,-,100,TK_Complete,22/06/2021,13/09/2020,28/06/2021,14/09/2020,"HCOM2090 FS","HCOM2090","HCOM2110 FS","HCOM2110",307,304,308,304,71,71,72,71,98,,"CCGT D1_Integrated Programme Schedule;(OEM) Commissioning;HC - Hot Commissioing;Hot Commissioning;Resume Hot Commissioning Aft Steam Blow Outage",1,1,0.0000455443,0.0022380468,0.02034588,6,1.0,0.0004902041,0.0068493151,0.0030769231,0.06875,0.0057441253,0.0643500644,0.0134529148,1.0,0.1675728062
1.2.3.3.1-54,HCOM2110,"Unit on Load / Contractual Performance Test",7112,"CCGTD1_IPS",TT_Task,"58299",-,-,-,100,TK_Complete,29/06/2021,15/09/2020,05/07/2021,16/09/2020,"HCOM2100 FS","HCOM2100","HCOM2120 FS","HCOM2120",308,304,309,304,72,71,72,71,99,,"CCGT D1_Integrated Programme Schedule;(OEM) Commissioning;HC - Hot Commissioing;Hot Commissioning;Resume Hot Commissioning Aft Steam Blow Outage",1,1,0.0000418179,0.002034588,0.0205493388,6,1.0,0.0004902041,0.0068493151,0.0030769231,0.063125,0.0052219321,0.064993565,0.0134529148,1.0,0.1675728062
1.2.3.3.1-55,HCOM2120,"Shutdown / hot start / Contractual Performance Test",7112,"CCGTD1_IPS",TT_Task,"58299",-,-,-,100,TK_Complete,06/07/2021,17/09/2020,12/07/2021,17/09/2020,"HCOM2110 FS","HCOM2110","HCOM2130 FS","HCOM2130",309,304,310,304,72,71,72,71,99,,"CCGT D1_Integrated Programme Schedule;(OEM) Commissioning;HC - Hot Commissioing;Hot Commissioning;Resume Hot Commissioning Aft Steam Blow Outage",1,1,0.0000380088,0.0018311292,0.0207527976,6,1.0,0.0004902041,0.0068493151,0.0030769231,0.057375,0.0046997389,0.0656370656,0.0134529148,1.0,0.1675728062
1.2.3.3.1-56,HCOM2130,"Unit on Load / Contractual Performance Test",7112,"CCGTD1_IPS",TT_Task,"58299",-,-,-,100,TK_Complete,13/07/2021,18/09/2020,19/07/2021,18/09/2020,"HCOM2120 FS","HCOM2120","HCOM2140 FS","HCOM2140",310,305,311,305,72,71,72,71,99,,"CCGT D1_Integrated Programme Schedule;(OEM) Commissioning;HC - Hot Commissioing;Hot Commissioning;Resume Hot Commissioning Aft Steam Blow Outage",1,1,0.0000341168,0.0016276704,0.0209562564,6,1.0,0.0004902041,0.0068493151,0.0030769231,0.0515,0.0041775457,0.0662805663,0.0134529148,1.0,0.1675728062
1.2.3.3.1-57,HCOM2140,"Unit Load / Contractual Performance Test / shutdown",7112,"CCGTD1_IPS",TT_Task,"58299",-,-,-,100,TK_Complete,20/07/2021,19/09/2020,26/07/2021,19/09/2020,"HCOM2130 FS","HCOM2130","HCOM2150 FS","HCOM2150",311,305,312,305,72,71,72,71,99,,"CCGT D1_Integrated Programme Schedule;(OEM) Commissioning;HC - Hot Commissioing;Hot Commissioning;Resume Hot Commissioning Aft Steam Blow Outage",1,1,0.000030142,0.0014242116,0.0211597152,6,1.0,0.0004902041,0.0068493151,0.0030769231,0.0455,0.0036553525,0.0669240669,0.0134529148,1.0,0.1675728062
1.2.3.3.1-58,HCOM2150,"Shutdown",7112,"CCGTD1_IPS",TT_Task,"58299",-,-,-,100,TK_Complete,27/07/2021,20/09/2020,02/08/2021,20/09/2020,"HCOM2140 FS","HCOM2140","HCOM2160 FS","HCOM2160",312,305,313,305,73,71,73,71,99,,"CCGT D1_Integrated Programme Schedule;(OEM) Commissioning;HC - Hot Commissioing;Hot Commissioning;Resume Hot Commissioning Aft Steam Blow Outage",1,1,0.0000260845,0.0012207528,0.021363174,6,1.0,0.0004902041,0.0068493151,0.0030769231,0.039375,0.0031331593,0.0675675676,0.0134529148,1.0,0.1675728062
1.2.3.3.1-59,HCOM2160,"Cold Start / YOC gas commissioning",7112,"CCGTD1_IPS",TT_Task,"58299",-,-,-,100,TK_Complete,03/08/2021,21/09/2020,09/08/2021,21/09/2020,"HCOM2150 FS","HCOM2150","HCOM2170 FS","HCOM2170",313,305,314,305,73,71,73,71,99,,"CCGT D1_Integrated Programme Schedule;(OEM) Commissioning;HC - Hot Commissioing;Hot Commissioning;Resume Hot Commissioning Aft Steam Blow Outage",1,1,0.0000219441,0.001017294,0.0215666328,6,1.0,0.0004902041,0.0068493151,0.0030769231,0.033125,0.0026109661,0.0682110682,0.0134529148,1.0,0.1675728062
1.2.3.3.1-60,HCOM2170,"YOC gas commissioning",7112,"CCGTD1_IPS",TT_Task,"58299",-,-,-,100,TK_Complete,10/08/2021,22/09/2020,16/08/2021,24/09/2020,"HCOM2160 FS","HCOM2160","A3900 FS,S1140 FF","A3900,S1140",314,305,315,305,73,71,73,71,99,,"CCGT D1_Integrated Programme Schedule;(OEM) Commissioning;HC - Hot Commissioing;Hot Commissioning;Resume Hot Commissioning Aft Steam Blow Outage",1,1,0.0000177209,0.0008138352,0.0217700916,6,1.0,0.0004902041,0.0068493151,0.0030769231,0.02675,0.0020887728,0.0688545689,0.0134529148,1.0,0.1675728062
1.2.3.3.1-61,HCOM1905,"Phase 1 - Contractual Reliability test Running",7112,"CCGTD1_IPS",TT_Task,"58299",-,-,-,100,TK_Complete,27/09/2021,27/07/2020,01/10/2021,28/07/2020,"HCOM1900 FS","HCOM1900","HCOM1910 FS","HCOM1910",321,297,322,297,75,69,75,69,99,,"CCGT D1_Integrated Programme Schedule;(OEM) Commissioning;HC - Hot Commissioing;Hot Commissioning;Resume Hot Commissioning Aft Steam Blow Outage",1,1,0.0001026817,0.0063072228,0.016276704,4,1.0,0.0005072244,0.0068493151,0.0030769231,0.155,0.0161879896,0.0514800515,0.0089686099,1.0,0.1745468274
1.2.3.3.2,58298,"Steam Blow & Restoration after First Fire",7112,"CCGTD1_IPS",WBS,"58293",,,,100,Complete,27/01/2020,24/01/2020,11/03/2020,02/03/2020,,,,,234,271,241,276,54,63,56,64,,,"CCGT D1_Integrated Programme Schedule;(OEM) Commissioning;HC - Hot Commissioing;Hot Commissioning"
1.2.3.3.2.1,58301,"Reinstatement & Commissioning After Steam Blow",7112,"CCGTD1_IPS",WBS,"58298",,,,100,Complete,05/02/2020,05/02/2020,11/03/2020,02/03/2020,,,,,236,272,241,276,55,63,56,64,,,"CCGT D1_Integrated Programme Schedule;(OEM) Commissioning;HC - Hot Commissioing;Hot Commissioning;Steam Blow & Restoration after First Fire"
1.2.3.3.2.1.1,58302,"SCR Installation",7112,"CCGTD1_IPS",WBS,"58301",,,,100,Complete,05/02/2020,05/02/2020,11/03/2020,01/03/2020,,,,,236,272,241,276,55,63,56,64,,,"CCGT D1_Integrated Programme Schedule;(OEM) Commissioning;HC - Hot Commissioing;Hot Commissioning;Steam Blow & Restoration after First Fire;Reinstatement & Commissioning After Steam Blow"
1.2.3.3.2.2,58300,"Steam Blowing",7112,"CCGTD1_IPS",WBS,"58298",,,,100,Complete,28/01/2020,28/01/2020,06/02/2020,04/02/2020,,,,,234,271,236,272,54,63,55,63,,,"CCGT D1_Integrated Programme Schedule;(OEM) Commissioning;HC - Hot Commissioing;Hot Commissioning;Steam Blow & Restoration after First Fire"
1.3,58236,"M&E",7112,"CCGTD1_IPS",WBS,"58232",,,,100,Complete,30/11/2017,22/09/2017,02/07/2020,,,,,,122,149,257,,28,34,60,,,,"CCGT D1_Integrated Programme Schedule"
1.3.1,58320,"Construction",7112,"CCGTD1_IPS",WBS,"58236",,,,100,Complete,09/02/2018,10/01/2018,02/07/2020,,,,,,132,164,257,,30,38,60,,,,"CCGT D1_Integrated Programme Schedule;M&E"
1.3.1.1,58325,"M&E Construction",7112,"CCGTD1_IPS",WBS,"58320",,,,100,Complete,01/03/2018,22/02/2018,14/04/2020,,,,,,135,170,245,,31,39,57,,,,"CCGT D1_Integrated Programme Schedule;M&E;Construction"
1.3.1.1.1,58515,"General",7112,"CCGTD1_IPS",WBS,"58325",,,,100,Complete,06/12/2019,04/11/2019,11/04/2020,,,,,,227,259,245,,53,60,57,,,,"CCGT D1_Integrated Programme Schedule;M&E;Construction;M&E Construction"
1.3.1.1.1.1,58517,"(00CXM) Weather Station",7112,"CCGTD1_IPS",WBS,"58515",,,,,NotStart,,,,,,,,,,,,,,,,,,,"CCGT D1_Integrated Programme Schedule;M&E;Construction;M&E Construction;General"
1.3.1.1.1.2,58516,"(10HSJ) Reduction Agent Supply System for SCR",7112,"CCGTD1_IPS",WBS,"58515",,,,100,Complete,06/12/2019,04/11/2019,11/04/2020,18/01/2020,,,,,227,259,245,270,53,60,57,63,,,"CCGT D1_Integrated Programme Schedule;M&E;Construction;M&E Construction;General"
1.3.1.1.1.2-1,10HSJ100,"Equipment Installation",7112,"CCGTD1_IPS",TT_Task,"58516",-,-,-,100,TK_Complete,06/12/2019,04/11/2019,13/12/2019,19/11/2019,"SI1HSJ4-25 FS,SUB-EIC-180 FS,KD_E05 FS,KD_B12 FS","SI1HSJ4-25,SUB-EIC-180,KD_E05,KD_B12","10HSJ110 FS","10HSJ110",227,259,228,261,53,60,53,61,85,,"CCGT D1_Integrated Programme Schedule;M&E;Construction;M&E Construction;General;(10HSJ) Reduction Agent Supply System for SCR",4,1,0.0000051341,0.0024415056,0.0054933876,7,0.2,0.0002203882,0.0273972603,0.0030769231,0.00775,0.0062663185,0.0173745174,0.0156950673,0.2,0.0570162198
1.3.1.1.1.2-2,10HSJ110,"EC+I",7112,"CCGTD1_IPS",TT_Task,"58516",-,-,-,100,TK_Complete,09/12/2019,04/11/2019,16/12/2019,23/11/2019,"10HSJ100 FS","10HSJ100","10HSJ120 FS,10HSJ130 FS","10HSJ120,10HSJ130",227,259,228,262,53,60,53,61,85,,"CCGT D1_Integrated Programme Schedule;M&E;Construction;M&E Construction;General;(10HSJ) Reduction Agent Supply System for SCR",1,2,0.0000044716,0.0022380468,0.0056968464,7,0.0,0.0002688032,0.0068493151,0.0061538462,0.00675,0.0057441253,0.018018018,0.0156950673,0.0,0.0768542033
1.3.1.1.1.2-3,10HSJ130,"Function Test",7112,"CCGTD1_IPS",TT_Task,"58516",-,-,-,100,TK_Complete,03/04/2020,11/01/2020,11/04/2020,18/01/2020,"10HSJ110 FS,10HSJ120 FF","10HSJ110,10HSJ120","TOP2000 FS,S1060 FF","TOP2000,S1060",244,269,245,270,57,62,57,63,90,,"CCGT D1_Integrated Programme Schedule;M&E;Construction;M&E Construction;General;(10HSJ) Reduction Agent Supply System for SCR",2,1,0.0000028983,0.0018311292,0.006103764,8,1.0,0.0003623321,0.0136986301,0.0030769231,0.004375,0.0046997389,0.0193050193,0.0179372197,1.0,0.1151774955
1.3.1.1.1.2-4,10HSJ120,"Precommissioning",7112,"CCGTD1_IPS",TT_Task,"58516",-,-,-,100,TK_Complete,06/12/2019,25/11/2019,14/12/2019,18/01/2020,"10HSJ110 FS","10HSJ110","10HSJ130 FF","10HSJ130",227,262,228,270,53,61,53,63,85,,"CCGT D1_Integrated Programme Schedule;M&E;Construction;M&E Construction;General;(10HSJ) Reduction Agent Supply System for SCR",1,1,0.0,0.002034588,0.0059003052,8,0.0,0.0001956787,0.0068493151,0.0030769231,0.0,0.0052219321,0.0186615187,0.0179372197,0.0,0.0468915705
1.3.1.1.2,58513,"Electrochlorination System",7112,"CCGTD1_IPS",WBS,"58325",,,,100,Complete,16/04/2019,17/04/2019,09/08/2019,07/09/2019,,,,,193,230,210,251,45,53,49,58,,,"CCGT D1_Integrated Programme Schedule;M&E;Construction;M&E Construction"
1.3.1.1.2.1,58514,"(00PUS) Electro Chlorination System",7112,"CCGTD1_IPS",WBS,"58513",,,,100,Complete,16/04/2019,17/04/2019,09/08/2019,07/09/2019,,,,,193,230,210,251,45,53,49,58,,,"CCGT D1_Integrated Programme Schedule;M&E;Construction;M&E Construction;Electrochlorination System"
1.3.1.1.2.1-1,00PUS10,"Equipment Installation",7112,"CCGTD1_IPS",TT_Task,"58514",-,-,-,100,TK_Complete,16/04/2019,17/04/2019,27/04/2019,24/07/2019,"KD_F07 FS","KD_F07","00PUS20 FS","00PUS20",193,230,195,244,45,53,45,57,54,,"CCGT D1_Integrated Programme Schedule;M&E;Construction;M&E Construction;Electrochlorination System;(00PUS) Electro Chlorination System",1,1,0.0000007867,0.004069176,0.0004069176,11,0.0,0.0000945848,0.0068493151,0.0030769231,0.0011875,0.0104438642,0.0012870013,0.0246636771,0.0,0.0054685356
1.3.1.1.2.1-2,00PUS20,"Booster Pump Install",7112,"CCGTD1_IPS",TT_Task,"58514",-,-,-,100,TK_Complete,11/06/2019,11/06/2019,20/06/2019,23/07/2019,"00PUS10 FS","00PUS10","00PUS30 SS","00PUS30",201,238,203,244,47,55,47,57,62,,"CCGT D1_Integrated Programme Schedule;M&E;Construction;M&E Construction;Electrochlorination System;(00PUS) Electro Chlorination System",1,1,0.0000014905,0.0038657172,0.0006103764,9,0.0,0.0001617524,0.0068493151,0.0030769231,0.00225,0.009921671,0.0019305019,0.0201793722,0.0,0.0329903398
1.3.1.1.2.1-3,00PUS30,"Auto Wash Strainer Install",7112,"CCGTD1_IPS",TT_Task,"58514",-,-,-,100,TK_Complete,15/06/2019,15/06/2019,26/06/2019,26/07/2019,"00PUS20 SS","00PUS20","00PUS40 SS","00PUS40",202,239,204,245,47,55,47,57,63,,"CCGT D1_Integrated Programme Schedule;M&E;Construction;M&E Construction;Electrochlorination System;(00PUS) Electro Chlorination System",1,1,0.0000021116,0.0036622584,0.0008138352,11,0.0,0.0002189191,0.0068493151,0.0030769231,0.0031875,0.0093994778,0.0025740026,0.0246636771,0.0,0.0564142869
1.3.1.1.2.1-4,00PUS40,"Chlorinated Cell Module Install",7112,"CCGTD1_IPS",TT_Task,"58514",-,-,-,100,TK_Complete,20/06/2019,15/06/2019,02/07/2019,27/07/2019,"00PUS30 SS","00PUS30","00PUS50 FS","00PUS50",203,239,204,245,47,55,47,57,64,,"CCGT D1_Integrated Programme Schedule;M&E;Construction;M&E Construction;Electrochlorination System;(00PUS) Electro Chlorination System",1,1,0.0000026499,0.0034587996,0.001017294,12,0.0,0.000267628,0.0068493151,0.0030769231,0.004,0.0088772846,0.0032175032,0.0269058296,0.0,0.0763726346
1.3.1.1.2.1-5,00PUS50,"Fresh Air Blower Install",7112,"CCGTD1_IPS",TT_Task,"58514",-,-,-,100,TK_Complete,26/06/2019,12/06/2019,06/07/2019,23/07/2019,"00PUS40 FS","00PUS40","00PUS60 FS","00PUS60",204,238,205,244,47,55,47,57,64,,"CCGT D1_Integrated Programme Schedule;M&E;Construction;M&E Construction;Electrochlorination System;(00PUS) Electro Chlorination System",1,1,0.0000031053,0.0032553408,0.0012207528,10,0.0,0.0003091639,0.0068493151,0.0030769231,0.0046875,0.0083550914,0.0038610039,0.0224215247,0.0,0.0933919305
1.3.1.1.2.1-6,00PUS60,"XXX and Contineous Dosing Install",7112,"CCGTD1_IPS",TT_Task,"58514",-,-,-,100,TK_Complete,02/07/2019,11/06/2019,12/07/2019,24/07/2019,"00PUS50 FS","00PUS50","00PUS70 FS","00PUS70",204,238,206,244,47,55,48,57,65,,"CCGT D1_Integrated Programme Schedule;M&E;Construction;M&E Construction;Electrochlorination System;(00PUS) Electro Chlorination System",1,1,0.0000034779,0.003051882,0.0014242116,10,0.0,0.0003445836,0.0068493151,0.0030769231,0.00525,0.0078328982,0.0045045045,0.0224215247,0.0,0.1079050647
1.3.1.1.2.1-7,00PUS70,"Fume Scrubber Install",7112,"CCGTD1_IPS",TT_Task,"58514",-,-,-,100,TK_Complete,08/07/2019,15/06/2019,17/07/2019,26/07/2019,"00PUS60 FS","00PUS60","00PUS80 FS","00PUS80",205,239,207,245,48,55,48,57,65,,"CCGT D1_Integrated Programme Schedule;M&E;Construction;M&E Construction;Electrochlorination System;(00PUS) Electro Chlorination System",1,1,0.0000037678,0.0028484232,0.0016276704,9,0.0,0.0003747076,0.0068493151,0.0030769231,0.0056875,0.007310705,0.0051480051,0.0201793722,0.0,0.1202483311
1.3.1.1.2.1-8,00PUS80,"Acid Tank and Acid Cleaning Install",7112,"CCGTD1_IPS",TT_Task,"58514",-,-,-,100,TK_Complete,15/07/2019,15/06/2019,25/07/2019,26/07/2019,"00PUS70 FS","00PUS70","00PUS90 FF","00PUS90",206,239,208,245,48,55,48,57,66,,"CCGT D1_Integrated Programme Schedule;M&E;Construction;M&E Construction;Electrochlorination System;(00PUS) Electro Chlorination System",1,1,0.0000039748,0.0026449644,0.0018311292,10,0.0,0.000400364,0.0068493151,0.0030769231,0.006,0.0067885117,0.0057915058,0.0224215247,0.0,0.1307609925
1.3.1.1.2.1-9,00PUS90,"Sump Pump Install",7112,"CCGTD1_IPS",TT_Task,"58514",-,-,-,100,TK_Complete,10/07/2019,13/06/2019,20/07/2019,25/07/2019,"00PUS80 FF","00PUS80","00PUS100 FS,SC1240 FS,SC1230 FS","00PUS100,SC1240,SC1230",206,238,207,244,48,55,48,57,66,,"CCGT D1_Integrated Programme Schedule;M&E;Construction;M&E Construction;Electrochlorination System;(00PUS) Electro Chlorination System",1,3,0.000004099,0.0024415056,0.002034588,10,0.0,0.0004224177,0.0068493151,0.0092307692,0.0061875,0.0062663185,0.0064350064,0.0224215247,0.0,0.1397974398
1.3.1.1.2.1-10,00PUS100,"EC+I",7112,"CCGTD1_IPS",TT_Task,"58514",-,-,-,100,TK_Complete,16/07/2019,13/06/2019,25/07/2019,27/07/2019,"SI-BZK4-25 FS,SI-C-4C40 FS,SI-BZK4-58 FS,EDS.1090 FS,00PUS90 FS","SI-BZK4-25,SI-C-4C40,SI-BZK4-58,EDS.1090,00PUS90","00PUS110 FS","00PUS110",206,238,208,245,48,55,48,57,66,,"CCGT D1_Integrated Programme Schedule;M&E;Construction;M&E Construction;Electrochlorination System;(00PUS) Electro Chlorination System",5,1,0.0000017679,0.0022380468,0.003051882,9,0.0,0.0004449734,0.0342465753,0.0030769231,0.00266875,0.0057441253,0.0096525097,0.0201793722,0.0,0.1490395766
1.3.1.1.2.1-11,00PUS110,"Precommissioning",7112,"CCGTD1_IPS",TT_Task,"58514",-,-,-,100,TK_Complete,31/07/2019,15/06/2019,09/08/2019,07/09/2019,"00PUS100 FS","00PUS100","TOP2700 FS,SC1240 FS,SC1230 FS","TOP2700,SC1240,SC1230",209,239,210,251,48,55,49,58,67,,"CCGT D1_Integrated Programme Schedule;M&E;Construction;M&E Construction;Electrochlorination System;(00PUS) Electro Chlorination System",1,3,0.0000015609,0.002034588,0.0032553408,9,0.0,0.0004653768,0.0068493151,0.0092307692,0.00235625,0.0052219321,0.0102960103,0.0201793722,0.0,0.1573998672
1.3.1.1.3,58511,"Control Room",7112,"CCGTD1_IPS",WBS,"58325",,,,100,Complete,06/11/2018,10/10/2018,04/07/2019,25/07/2019,,,,,170,203,205,244,39,47,47,57,,,"CCGT D1_Integrated Programme Schedule;M&E;Construction;M&E Construction"
1.3.1.1.3.1,58512,"(00CR) Control Room Equipment",7112,"CCGTD1_IPS",WBS,"58511",,,,100,Complete,06/11/2018,10/10/2018,04/07/2019,25/07/2019,,,,,170,203,205,244,39,47,47,57,,,"CCGT D1_Integrated Programme Schedule;M&E;Construction;M&E Construction;Control Room"
1.3.1.1.3.1-1,00CR10,"Cable Tray Installation (Under Floor)",7112,"CCGTD1_IPS",TT_Task,"58512",-,-,-,100,TK_Complete,06/11/2018,20/11/2018,04/12/2018,31/01/2019,"SUB-EIC-180 FS,SI-BZP4-27 FS,SI-BZP4B25 FS,SI-CR-4-40 FS,EDS.1040 FS,SI-BZP4-25 FS","SUB-EIC-180,SI-BZP4-27,SI-BZP4B25,SI-CR-4-40,EDS.1040,SI-BZP4-25","00CR15 FS,ECS19.1420 FS","00CR15,ECS19.1420",170,209,174,219,39,48,40,51,38,,"CCGT D1_Integrated Programme Schedule;M&E;Construction;M&E Construction;Control Room;(00CR) Control Room Equipment",6,2,0.0000137967,0.006103764,0.0059003052,28,0.0,0.0001289458,0.0410958904,0.0061538462,0.0208263889,0.0156657963,0.0186615187,0.0627802691,0.0,0.0195478951
1.3.1.1.3.1-2,A3300,"Control Room Equipment Installation",7112,"CCGTD1_IPS",TT_Task,"58512",-,-,-,100,TK_Complete,14/06/2019,07/05/2019,26/06/2019,06/07/2019,"SI-CR-4-40 FS,ECS19.1420 FS","SI-CR-4-40,ECS19.1420","TOP2330 FS,TOP2660 FS,TOP2650 FS","TOP2330,TOP2660,TOP2650",202,233,204,242,47,54,47,56,63,,"CCGT D1_Integrated Programme Schedule;M&E;Construction;M&E Construction;Control Room;(00CR) Control Room Equipment",2,3,0.0000203799,0.0038657172,0.0097660224,12,0.0,0.0007006957,0.0136986301,0.0092307692,0.0307638889,0.009921671,0.0308880309,0.0269058296,0.0,0.2538213341
1.3.1.1.3.1-3,A3310,"Installation of Telecommunication System",7112,"CCGTD1_IPS",TT_Task,"58512",-,-,-,100,TK_Complete,22/06/2019,13/05/2019,02/07/2019,06/07/2019,"A1010 FS,00CR60 FS","A1010,00CR60","TOP2330 FS","TOP2330",203,234,204,242,47,54,47,56,64,,"CCGT D1_Integrated Programme Schedule;M&E;Construction;M&E Construction;Control Room;(00CR) Control Room Equipment",2,1,0.0000000414,0.0018311292,0.0077314344,10,0.0,0.0002277241,0.0136986301,0.0030769231,0.0000625,0.0046997389,0.0244530245,0.0224215247,0.0,0.0600221161
1.3.1.1.3.1-4,ECS19.1420,"Cable Laying of Local Control Room",7112,"CCGTD1_IPS",TT_Task,"58512",-,-,-,100,TK_Complete,18/04/2019,18/04/2019,14/05/2019,26/06/2019,"CP-BZK7A25 FS,SI-CP-4-40 FS,00CR10 FS,00CR80 FS,SI-BZK4-58 FS,00CR100 FS","CP-BZK7A25,SI-CP-4-40,00CR10,00CR80,SI-BZK4-58,00CR100","A3300 FS","A3300",194,230,197,240,45,53,46,56,54,,"CCGT D1_Integrated Programme Schedule;M&E;Construction;M&E Construction;Control Room;(00CR) Control Room Equipment",6,1,0.0000206283,0.004069176,0.0095625636,26,0.0,0.0007194566,0.0410958904,0.0030769231,0.0311388889,0.0104438642,0.0302445302,0.0582959641,0.0,0.2615085795
1.3.1.1.3.1-5,00CR15,"Install Floor",7112,"CCGTD1_IPS",TT_Task,"58512",-,-,-,100,TK_Complete,01/04/2019,03/04/2019,13/04/2019,07/05/2019,"00CR10 FS","00CR10","00CR100 FF,00CR20 FS","00CR100,00CR20",191,228,193,233,44,53,45,54,51,,"CCGT D1_Integrated Programme Schedule;M&E;Construction;M&E Construction;Control Room;(00CR) Control Room Equipment",1,2,0.0000083222,0.0059003052,0.006103764,12,0.0,0.0001158975,0.0068493151,0.0061538462,0.0125625,0.0151436031,0.0193050193,0.0269058296,0.0,0.0142013673
1.3.1.1.3.1-6,00CR20,"I/O Cabinet Installation",7112,"CCGTD1_IPS",TT_Task,"58512",-,-,-,100,TK_Complete,29/01/2019,10/10/2018,01/03/2019,04/03/2019,"EDS.1040 FS,SI-CR-4-40 FS,00CR15 FS,SI-CP-4-40 FS","EDS.1040,SI-CR-4-40,00CR15,SI-CP-4-40","TOP2330 FS,00CR30 FS","TOP2330,00CR30",182,203,187,224,42,47,43,52,46,,"CCGT D1_Integrated Programme Schedule;M&E;Construction;M&E Construction;Control Room;(00CR) Control Room Equipment",4,2,0.0000074616,0.0056968464,0.0065106816,31,0.0,0.0002137413,0.0273972603,0.0061538462,0.0112633929,0.0146214099,0.0205920206,0.0695067265,0.0,0.0542926662
1.3.1.1.3.1-7,00CR40,"Engineer Work Station Installation",7112,"CCGTD1_IPS",TT_Task,"58512",-,-,-,100,TK_Complete,12/03/2019,15/03/2019,26/03/2019,21/05/2019,"SI-CP-4-40 FS,EDS.1040 FS,SI-CR-4-40 FS,00CR30 FS","SI-CP-4-40,EDS.1040,SI-CR-4-40,00CR30","TOP2330 FS,00CR50 FS","TOP2330,00CR50",188,226,190,235,44,52,44,54,48,,"CCGT D1_Integrated Programme Schedule;M&E;Construction;M&E Construction;Control Room;(00CR) Control Room Equipment",4,2,0.0000061574,0.0052899288,0.0069175992,14,0.0,0.0003335434,0.0273972603,0.0061538462,0.0092946429,0.0135770235,0.0218790219,0.0313901345,0.0,0.1033813578
1.3.1.1.3.1-8,00CR50,"Operator Work Station Installation",7112,"CCGTD1_IPS",TT_Task,"58512",-,-,-,100,TK_Complete,29/06/2019,04/07/2019,04/07/2019,25/07/2019,"SI-CR-4-40 FS,EDS.1040 FS,00CR40 FS,SI-CP-4-40 FS,00CR70 FF","SI-CR-4-40,EDS.1040,00CR40,SI-CP-4-40,00CR70","00CR60 FS,TOP2330 FS,00CR100 FF","00CR60,TOP2330,00CR100",204,241,205,244,47,56,47,57,65,,"CCGT D1_Integrated Programme Schedule;M&E;Construction;M&E Construction;Control Room;(00CR) Control Room Equipment",5,3,0.0000062816,0.00508647,0.0073245168,5,0.0,0.0004436682,0.0342465753,0.0092307692,0.0094821429,0.0130548303,0.0231660232,0.0112107623,0.0,0.1485047801
1.3.1.1.3.1-9,00CR60,"Network/Cabinet Installation",7112,"CCGTD1_IPS",TT_Task,"58512",-,-,-,100,TK_Complete,18/06/2019,10/05/2019,21/06/2019,25/06/2019,"00CR50 FS,EDS.1040 FS,SI-CP-4-40 FS,SI-CR-4-40 FS","00CR50,EDS.1040,SI-CP-4-40,SI-CR-4-40","TOP2330 FS,00CR80 FS,A3310 FS","TOP2330,00CR80,A3310",202,234,203,240,47,54,47,56,63,,"CCGT D1_Integrated Programme Schedule;M&E;Construction;M&E Construction;Control Room;(00CR) Control Room Equipment",4,3,0.0000029693,0.0046795524,0.0075279756,3,0.0,0.0002742964,0.0273972603,0.0092307692,0.0044821429,0.0120104439,0.0238095238,0.0067264574,0.0,0.0791050257
1.3.1.1.3.1-10,00CR70,"AC/DC System Installation",7112,"CCGTD1_IPS",TT_Task,"58512",-,-,-,100,TK_Complete,18/06/2019,14/05/2019,20/06/2019,28/06/2019,"SI-CR-4-40 FS,EDS.1040 FS,SI-CP-4-40 FS","SI-CR-4-40,EDS.1040,SI-CP-4-40","TOP2330 FS,00CR50 FF","TOP2330,00CR50",202,234,203,241,47,54,47,56,63,,"CCGT D1_Integrated Programme Schedule;M&E;Construction;M&E Construction;Control Room;(00CR) Control Room Equipment",3,2,0.0000001124,0.0052899288,0.0008138352,2,0.0,0.0000839836,0.0205479452,0.0061538462,0.0001696429,0.0135770235,0.0025740026,0.0044843049,0.0,0.0011247152
1.3.1.1.3.1-11,00CR80,"Hardwire Switches Installation",7112,"CCGTD1_IPS",TT_Task,"58512",-,-,-,100,TK_Complete,07/06/2019,22/06/2019,13/06/2019,27/06/2019,"SI-CP-4-40 FS,EDS.1040 FS,00CR60 FS,SI-CR-4-40 FS","SI-CP-4-40,EDS.1040,00CR60,SI-CR-4-40","TOP2330 FS,ECS19.1420 FS","TOP2330,ECS19.1420",201,240,202,240,46,56,47,56,62,,"CCGT D1_Integrated Programme Schedule;M&E;Construction;M&E Construction;Control Room;(00CR) Control Room Equipment",4,2,0.0000007886,0.0042726348,0.0077314344,6,1.0,0.0001770763,0.0273972603,0.0061538462,0.0011904762,0.0109660574,0.0244530245,0.0134529148,1.0,0.0392692625
1.3.1.1.3.1-12,00CR90,"Furniture Installation",7112,"CCGTD1_IPS",TT_Task,"58512",-,-,-,100,TK_Complete,09/03/2019,15/03/2019,14/03/2019,29/04/2019,"EDS.1040 FS,SI-CR-4-40 FS,SI-CP-4-40 FS","EDS.1040,SI-CR-4-40,SI-CP-4-40","","",188,226,189,232,43,52,44,54,48,,"CCGT D1_Integrated Programme Schedule;M&E;Construction;M&E Construction;Control Room;(00CR) Control Room Equipment",3,0,0.0,0.0,0.0008138352,5,0.0,0.000088101,0.0205479452,0.0,0.0,0.0,0.0025740026,0.0112107623,0.0,0.0028117879
1.3.1.1.3.1-13,00CR100,"Printer Installation",7112,"CCGTD1_IPS",TT_Task,"58512",-,-,-,100,TK_Complete,01/06/2019,22/06/2019,04/06/2019,20/07/2019,"SI-CR-4-40 FS,00CR15 FF,EDS.1040 FS,SUB-EIC-180 FS,00CR50 FF","SI-CR-4-40,00CR15,EDS.1040,SUB-EIC-180,00CR50","TOP2330 FS,ECS19.1420 FS","TOP2330,ECS19.1420",200,240,200,244,46,56,46,56,61,,"CCGT D1_Integrated Programme Schedule;M&E;Construction;M&E Construction;Control Room;(00CR) Control Room Equipment",5,2,0.0000080511,0.0042726348,0.0075279756,3,0.0,0.0002828267,0.0342465753,0.0061538462,0.0121532738,0.0109660574,0.0238095238,0.0067264574,0.0,0.0826002873
1.3.1.1.3.1-14,00CR30,"Control Cabinet Installation",7112,"CCGTD1_IPS",TT_Task,"58512",-,-,-,100,TK_Complete,27/02/2019,10/10/2018,15/03/2019,12/03/2019,"SI-CP-4-40 FS,SI-CR-4-40 FS,00CR20 FS","SI-CP-4-40,SI-CR-4-40,00CR20","00CR40 FS,TOP2330 FS","00CR40,TOP2330",187,203,189,225,43,47,44,52,48,,"CCGT D1_Integrated Programme Schedule;M&E;Construction;M&E Construction;Control Room;(00CR) Control Room Equipment",3,2,0.000006601,0.0054933876,0.0067141404,16,0.0,0.0002737327,0.0205479452,0.0061538462,0.0099642857,0.0140992167,0.0212355212,0.0358744395,0.0,0.078874044
1.3.1.1.4,58496,"Others (FF & Buildings)",7112,"CCGTD1_IPS",WBS,"58325",,,,100,Complete,09/02/2019,15/01/2019,14/04/2020,17/03/2020,,,,,184,217,245,278,43,50,57,65,,,"CCGT D1_Integrated Programme Schedule;M&E;Construction;M&E Construction"
1.3.1.1.4.1,58507,"Buildings",7112,"CCGTD1_IPS",WBS,"58496",,,,100,Complete,01/04/2019,16/04/2019,13/09/2019,18/01/2020,,,,,191,230,215,270,44,53,50,63,,,"CCGT D1_Integrated Programme Schedule;M&E;Construction;M&E Construction;Others (FF & Buildings)"
1.3.1.1.4.1.1,58508,"Communication (CY)",7112,"CCGTD1_IPS",WBS,"58507",,,,100,Complete,01/04/2019,16/04/2019,13/09/2019,18/01/2020,,,,,191,230,215,270,44,53,50,63,,,"CCGT D1_Integrated Programme Schedule;M&E;Construction;M&E Construction;Others (FF & Buildings);Buildings"
1.3.1.1.4.1.1.1,58510,"(10CY) Communication / Security Systems 10",7112,"CCGTD1_IPS",WBS,"58508",,,,100,Complete,24/04/2019,24/04/2019,12/09/2019,18/01/2020,,,,,195,231,215,270,45,54,50,63,,,"CCGT D1_Integrated Programme Schedule;M&E;Construction;M&E Construction;Others (FF & Buildings);Buildings;Communication (CY)"
1.3.1.1.4.1.1.1-1,10CY10,"Erection Telecommunication Other Buildings (Except UCA)",7112,"CCGTD1_IPS",TT_Task,"58510",-,-,-,100,TK_Complete,24/04/2019,24/04/2019,30/05/2019,03/08/2019,"SUB-EIC-180 FS,KD_D02 FS,SI-CYA4-25 FS,SI-CYP4-25 FS,KD_E07 FS","SUB-EIC-180,KD_D02,SI-CYA4-25,SI-CYP4-25,KD_E07","10CY20 FS","10CY20",195,231,200,246,45,54,46,57,55,,"CCGT D1_Integrated Programme Schedule;M&E;Construction;M&E Construction;Others (FF & Buildings);Buildings;Communication (CY);(10CY) Communication / Security Systems 10",5,1,0.00000472,0.0026449644,0.0056968464,36,0.0,0.0001607924,0.0342465753,0.0030769231,0.007125,0.0067885117,0.018018018,0.0807174888,0.0,0.032596964
1.3.1.1.4.1.1.1-2,10CY20,"Cable Raceways",7112,"CCGTD1_IPS",TT_Task,"58510",-,-,-,100,TK_Complete,06/06/2019,25/05/2019,08/07/2019,26/06/2019,"10CY10 FS","10CY10","10CY30 FS","10CY30",201,236,205,240,46,55,48,56,62,,"CCGT D1_Integrated Programme Schedule;M&E;Construction;M&E Construction;Others (FF & Buildings);Buildings;Communication (CY);(10CY) Communication / Security Systems 10",1,1,0.0000040576,0.0024415056,0.0059003052,32,1.0,0.0002180909,0.0068493151,0.0030769231,0.006125,0.0062663185,0.0186615187,0.0717488789,1.0,0.05607494
1.3.1.1.4.1.1.1-3,10CY30,"Cable Pulling",7112,"CCGTD1_IPS",TT_Task,"58510",-,-,-,100,TK_Complete,18/06/2019,13/06/2019,12/07/2019,10/08/2019,"10CY20 FS","10CY20","10CY40 FS","10CY40",202,238,206,247,47,55,48,57,63,,"CCGT D1_Integrated Programme Schedule;M&E;Construction;M&E Construction;Others (FF & Buildings);Buildings;Communication (CY);(10CY) Communication / Security Systems 10",1,1,0.0000033123,0.0022380468,0.006103764,24,0.0,0.0002669155,0.0068493151,0.0030769231,0.005,0.0057441253,0.0193050193,0.0538116592,0.0,0.0760807045
1.3.1.1.4.1.1.1-4,10CY50,"Precommissioning",7112,"CCGTD1_IPS",TT_Task,"58510",-,-,-,100,TK_Complete,31/08/2019,06/09/2019,12/09/2019,18/01/2020,"10CY40 FS","10CY40","TOP1040 FS","TOP1040",213,251,215,270,49,58,50,63,71,,"CCGT D1_Integrated Programme Schedule;M&E;Construction;M&E Construction;Others (FF & Buildings);Buildings;Communication (CY);(10CY) Communication / Security Systems 10",1,1,0.0000015733,0.0018311292,0.0065106816,12,0.0,0.0003440811,0.0068493151,0.0030769231,0.002375,0.0046997389,0.0205920206,0.0269058296,0.0,0.1076991524
1.3.1.1.4.1.1.1-5,10CY40,"Cable Termination",7112,"CCGTD1_IPS",TT_Task,"58510",-,-,-,100,TK_Complete,29/06/2019,29/06/2019,24/07/2019,05/09/2019,"10CY30 FS","10CY30","10CY50 FS","10CY50",204,241,208,250,47,56,48,58,65,,"CCGT D1_Integrated Programme Schedule;M&E;Construction;M&E Construction;Others (FF & Buildings);Buildings;Communication (CY);(10CY) Communication / Security Systems 10",1,1,0.0000024842,0.002034588,0.0063072228,25,0.0,0.0003085517,0.0068493151,0.0030769231,0.00375,0.0052219321,0.0199485199,0.0560538117,0.0,0.0931410503
1.3.1.1.4.1.1.2,58509,"(00CY) Communication System in 00UCA",7112,"CCGTD1_IPS",WBS,"58508",,,,100,Complete,01/04/2019,16/04/2019,13/09/2019,20/11/2019,,,,,191,230,215,261,44,53,50,61,,,"CCGT D1_Integrated Programme Schedule;M&E;Construction;M&E Construction;Others (FF & Buildings);Buildings;Communication (CY)"
1.3.1.1.4.1.1.2-1,00CY10,"Equipment Installation",7112,"CCGTD1_IPS",TT_Task,"58509",-,-,-,100,TK_Complete,01/04/2019,16/04/2019,17/04/2019,03/08/2019,"SUB-EIC-180 FS,SI-CYA4-25 FS,SI-CYP4-25 FS,KD_D02 FS","SUB-EIC-180,SI-CYA4-25,SI-CYP4-25,KD_D02","00CY20 FS","00CY20",191,230,194,246,44,53,45,57,51,,"CCGT D1_Integrated Programme Schedule;M&E;Construction;M&E Construction;Others (FF & Buildings);Buildings;Communication (CY);(00CY) Communication System in 00UCA",4,1,0.0000067074,0.003051882,0.0054933876,16,0.0,0.0001066273,0.0273972603,0.0030769231,0.010125,0.0078328982,0.0173745174,0.0358744395,0.0,0.0104029331
1.3.1.1.4.1.1.2-2,00CY20,"Cable Raceways",7112,"CCGTD1_IPS",TT_Task,"58509",-,-,-,100,TK_Complete,23/04/2019,23/04/2019,18/05/2019,27/06/2019,"00CY10 FS","00CY10","00CY30 FS","00CY30",194,231,198,240,45,54,46,56,55,,"CCGT D1_Integrated Programme Schedule;M&E;Construction;M&E Construction;Others (FF & Buildings);Buildings;Communication (CY);(00CY) Communication System in 00UCA",1,1,0.0000061692,0.0028484232,0.0056968464,25,0.0,0.0001719999,0.0068493151,0.0030769231,0.0093125,0.007310705,0.018018018,0.0560538117,0.0,0.0371892043
1.3.1.1.4.1.1.2-3,00CY30,"Cable Pulling",7112,"CCGTD1_IPS",TT_Task,"58509",-,-,-,100,TK_Complete,07/06/2019,30/05/2019,03/07/2019,10/08/2019,"00CY20 FS","00CY20","00CY40 FS","00CY40",201,236,205,247,46,55,47,57,62,,"CCGT D1_Integrated Programme Schedule;M&E;Construction;M&E Construction;Others (FF & Buildings);Buildings;Communication (CY);(00CY) Communication System in 00UCA",1,1,0.0000055481,0.0026449644,0.0059003052,26,0.0,0.0002276492,0.0068493151,0.0030769231,0.008375,0.0067885117,0.0186615187,0.0582959641,0.0,0.0599914172
1.3.1.1.4.1.1.2-4,00CY40,"Cable Termination",7112,"CCGTD1_IPS",TT_Task,"58509",-,-,-,100,TK_Complete,12/07/2019,12/06/2019,05/08/2019,02/09/2019,"00CY30 FS","00CY30","00CY50 FS","00CY50",206,238,209,250,48,55,48,58,66,,"CCGT D1_Integrated Programme Schedule;M&E;Construction;M&E Construction;Others (FF & Buildings);Buildings;Communication (CY);(00CY) Communication System in 00UCA",1,1,0.0000048443,0.0024415056,0.006103764,24,0.0,0.0002750716,0.0068493151,0.0030769231,0.0073125,0.0062663185,0.0193050193,0.0538116592,0.0,0.0794226465
1.3.1.1.4.1.1.2-5,00CY50,"Precommissioning",7112,"CCGTD1_IPS",TT_Task,"58509",-,-,-,100,TK_Complete,03/09/2019,03/09/2019,13/09/2019,20/11/2019,"00CY40 FS","00CY40","TOP2350 FS,TOP2640 FS","TOP2350,TOP2640",213,250,215,261,49,58,50,61,75,,"CCGT D1_Integrated Programme Schedule;M&E;Construction;M&E Construction;Others (FF & Buildings);Buildings;Communication (CY);(00CY) Communication System in 00UCA",1,2,0.0000040576,0.0022380468,0.0063072228,10,0.0,0.000315515,0.0068493151,0.0061538462,0.006125,0.0057441253,0.0199485199,0.0224215247,0.0,0.0959942751
1.3.1.1.4.2,58497,"Fire Fighting (SG)",7112,"CCGTD1_IPS",WBS,"58496",,,,100,Complete,09/02/2019,15/01/2019,14/04/2020,17/03/2020,,,,,184,217,245,278,43,50,57,65,,,"CCGT D1_Integrated Programme Schedule;M&E;Construction;M&E Construction;Others (FF & Buildings)"
1.3.1.1.4.2.1,58506,"(10SGY) Fire Detection Sytsem",7112,"CCGTD1_IPS",WBS,"58497",,,,100,Complete,15/02/2019,15/02/2019,19/06/2019,20/01/2020,,,,,185,222,203,270,43,51,47,63,,,"CCGT D1_Integrated Programme Schedule;M&E;Construction;M&E Construction;Others (FF & Buildings);Fire Fighting (SG)"
1.3.1.1.4.2.1-1,A3220,"Installation Fire Detection System (SGY)",7112,"CCGTD1_IPS",TT_Task,"58506",-,-,-,100,TK_Complete,15/02/2019,15/02/2019,19/06/2019,20/01/2020,"SI-SG-4-56 FS,SI-CYE4-58 FS,SUB-BOP-160 FS,KD_E03 FS,KD_E04 FS,KD_E05 FS,A1010 FS","SI-SG-4-56,SI-CYE4-58,SUB-BOP-160,KD_E03,KD_E04,KD_E05,A1010","SC1230 FS","SC1230",185,222,203,270,43,51,47,63,47,,"CCGT D1_Integrated Programme Schedule;M&E;Construction;M&E Construction;Others (FF & Buildings);Fire Fighting (SG);(10SGY) Fire Detection Sytsem",7,1,0.0000159353,0.0016276704,0.0115971516,124,0.0,0.0003558631,0.0479452055,0.0030769231,0.0240546875,0.0041775457,0.0366795367,0.2780269058,0.0,0.1125268269
1.3.1.1.4.2.2,58505,"(10SGJ-01) FF CO2 System for PCC 10SGJ",7112,"CCGTD1_IPS",WBS,"58497",,,,100,Complete,11/10/2019,05/07/2019,27/11/2019,05/01/2020,,,,,219,242,226,268,51,56,52,62,,,"CCGT D1_Integrated Programme Schedule;M&E;Construction;M&E Construction;Others (FF & Buildings);Fire Fighting (SG)"
1.3.1.1.4.2.2-1,FSS22.1060,"Installation of Fire Fighting CO2 System for PCC 10SGJ",7112,"CCGTD1_IPS",TT_Task,"58505",-,-,-,100,TK_Complete,11/10/2019,05/07/2019,27/11/2019,05/01/2020,"KD_E03 FS,SI1MPB4-25 FS,SUB-BOP-160 FS,KD_D06 FS,KD_E04 FS,KD_E05 FS,A1010 FS,KD_D02 FS","KD_E03,SI1MPB4-25,SUB-BOP-160,KD_D06,KD_E04,KD_E05,A1010,KD_D02","TOP1650 FS,SC1220 FS","TOP1650,SC1220",219,242,226,268,51,56,52,62,79,,"CCGT D1_Integrated Programme Schedule;M&E;Construction;M&E Construction;Others (FF & Buildings);Fire Fighting (SG);(10SGJ-01) FF CO2 System for PCC 10SGJ",8,2,0.000009654,0.0022380468,0.0118006104,47,0.0,0.000171816,0.0547945205,0.0061538462,0.0145729167,0.0057441253,0.0373230373,0.1053811659,0.0,0.0371138684
1.3.1.1.4.2.3,58504,"(10SGJ-02) FF CO2 System CYE/SGJ for GT Noise Enclosure and Gas Skid",7112,"CCGTD1_IPS",WBS,"58497",,,,100,Complete,31/07/2019,05/07/2019,06/04/2020,04/01/2020,,,,,209,242,244,268,48,56,57,62,,,"CCGT D1_Integrated Programme Schedule;M&E;Construction;M&E Construction;Others (FF & Buildings);Fire Fighting (SG)"
1.3.1.1.4.2.3-1,10SGJ-02-10,"Install Skid+Auxiliaries",7112,"CCGTD1_IPS",TT_Task,"58504",-,-,-,100,TK_Complete,30/09/2019,08/10/2019,15/10/2019,19/10/2019,"SI1SGJ4-25 FS,KD_E03 FS,SUB-BOP-160 FS,KD_D06 FS,KD_E04 FS,KD_E05 FS,A1010 FS","SI1SGJ4-25,KD_E03,SUB-BOP-160,KD_D06,KD_E04,KD_E05,A1010","10SGJ-02-30 FS,10SGJ-02-20 SS","10SGJ-02-30,10SGJ-02-20",217,255,219,257,50,59,51,60,78,,"CCGT D1_Integrated Programme Schedule;M&E;Construction;M&E Construction;Others (FF & Buildings);Fire Fighting (SG);(10SGJ-02) FF CO2 System CYE/SGJ for GT Noise Enclosure and Gas Skid",7,2,0.0000117173,0.003051882,0.0115971516,15,1.0,0.0001108895,0.0479452055,0.0061538462,0.0176875,0.0078328982,0.0366795367,0.033632287,1.0,0.0121493536
1.3.1.1.4.2.3-2,10SGJ-02-20,"Install all pipepwork and Supports",7112,"CCGTD1_IPS",TT_Task,"58504",-,-,-,100,TK_Complete,31/07/2019,05/07/2019,12/09/2019,12/10/2019,"10SGJ-02-10 SS","10SGJ-02-10","10SGJ-02-40 FS","10SGJ-02-40",209,242,215,256,48,56,50,59,67,,"CCGT D1_Integrated Programme Schedule;M&E;Construction;M&E Construction;Others (FF & Buildings);Fire Fighting (SG);(10SGJ-02) FF CO2 System CYE/SGJ for GT Noise Enclosure and Gas Skid",1,1,0.0000024014,0.0026449644,0.0118006104,43,0.0,0.0001392281,0.0068493151,0.0030769231,0.003625,0.0067885117,0.0373230373,0.0964125561,0.0,0.023761055
1.3.1.1.4.2.3-3,10SGJ-02-30,"EC+I",7112,"CCGTD1_IPS",TT_Task,"58504",-,-,-,100,TK_Complete,16/10/2019,14/10/2019,12/11/2019,30/11/2019,"SI-BZK4-25 FS,SI-BZK4-58 FS,10SGJ-02-10 FS","SI-BZK4-25,SI-BZK4-58,10SGJ-02-10","10SGJ-02-50 FS","10SGJ-02-50",220,256,223,263,51,59,52,61,79,,"CCGT D1_Integrated Programme Schedule;M&E;Construction;M&E Construction;Others (FF & Buildings);Fire Fighting (SG);(10SGJ-02) FF CO2 System CYE/SGJ for GT Noise Enclosure and Gas Skid",3,1,0.0000054653,0.0024415056,0.012207528,27,0.0,0.0001202083,0.0205479452,0.0030769231,0.00825,0.0062663185,0.0386100386,0.0605381166,0.0,0.0159677056
1.3.1.1.4.2.3-4,10SGJ-02-40,"Hydro Test",7112,"CCGTD1_IPS",TT_Task,"58504",-,-,-,100,TK_Complete,28/03/2020,26/12/2019,06/04/2020,04/01/2020,"10SGJ-02-20 FS","10SGJ-02-20","10SGJ-02-50 FF","10SGJ-02-50",243,266,244,268,56,62,57,62,89,,"CCGT D1_Integrated Programme Schedule;M&E;Construction;M&E Construction;Others (FF & Buildings);Fire Fighting (SG);(10SGJ-02) FF CO2 System CYE/SGJ for GT Noise Enclosure and Gas Skid",1,1,0.0000004968,0.0024415056,0.0120040692,9,1.0,0.0001997615,0.0068493151,0.0030769231,0.00075,0.0062663185,0.037966538,0.0201793722,1.0,0.0485644964
1.3.1.1.4.2.3-5,10SGJ-02-50,"Precommissioning/Flush/Clean",7112,"CCGTD1_IPS",TT_Task,"58504",-,-,-,100,TK_Complete,28/03/2020,26/12/2019,06/04/2020,04/01/2020,"10SGJ-02-40 FF,10SGJ-02-30 FS","10SGJ-02-40,10SGJ-02-30","TOP1390 FS,SC1220 FS","TOP1390,SC1220",243,266,244,268,56,62,57,62,89,,"CCGT D1_Integrated Programme Schedule;M&E;Construction;M&E Construction;Others (FF & Buildings);Fire Fighting (SG);(10SGJ-02) FF CO2 System CYE/SGJ for GT Noise Enclosure and Gas Skid",2,2,0.0000043474,0.0022380468,0.0128179044,9,1.0,0.0003536436,0.0136986301,0.0061538462,0.0065625,0.0057441253,0.0405405405,0.0201793722,1.0,0.1116173843
1.3.1.1.4.2.4,58503,"(10SGC-01) FF Spary Deluge System for BAT/ BBT SGC",7112,"CCGTD1_IPS",WBS,"58497",,,,100,Complete,30/09/2019,27/05/2019,13/04/2020,17/03/2020,,,,,217,236,245,278,50,55,57,65,,,"CCGT D1_Integrated Programme Schedule;M&E;Construction;M&E Construction;Others (FF & Buildings);Fire Fighting (SG)"
1.3.1.1.4.2.4-1,10SGC-01-10,"Install Deluge Pipework/Valves/Sprinklers",7112,"CCGTD1_IPS",TT_Task,"58503",-,-,-,100,TK_Complete,25/10/2019,19/08/2019,16/11/2019,12/10/2019,"10SGC-01-20 FS","10SGC-01-20","10SGC-01-30 FS","10SGC-01-30",221,248,224,256,51,57,52,59,80,,"CCGT D1_Integrated Programme Schedule;M&E;Construction;M&E Construction;Others (FF & Buildings);Fire Fighting (SG);(10SGC-01) FF Spary Deluge System for BAT/ BBT SGC",1,1,0.0000011593,0.0024415056,0.001017294,22,0.0,0.000190402,0.0068493151,0.0030769231,0.00175,0.0062663185,0.0032175032,0.0493273543,0.0,0.0447294503
1.3.1.1.4.2.4-2,10SGC-01-20,"Install Supports",7112,"CCGTD1_IPS",TT_Task,"58503",-,-,-,100,TK_Complete,30/09/2019,27/05/2019,24/10/2019,17/10/2019,"10BAT20 SS","10BAT20","10SGC-01-10 FS","10SGC-01-10",217,236,221,256,50,55,51,59,78,,"CCGT D1_Integrated Programme Schedule;M&E;Construction;M&E Construction;Others (FF & Buildings);Fire Fighting (SG);(10SGC-01) FF Spary Deluge System for BAT/ BBT SGC",1,1,0.0000008281,0.0026449644,0.0008138352,24,0.0,0.0001282231,0.0068493151,0.0030769231,0.00125,0.0067885117,0.0025740026,0.0538116592,0.0,0.0192517754
1.3.1.1.4.2.4-3,10SGC-01-30,"Hydro Test",7112,"CCGTD1_IPS",TT_Task,"58503",-,-,-,100,TK_Complete,01/11/2019,09/10/2019,05/11/2019,11/10/2019,"10SGC-01-10 FS","10SGC-01-10","10SGC-01-40 FS","10SGC-01-40",222,255,222,256,51,59,52,59,80,,"CCGT D1_Integrated Programme Schedule;M&E;Construction;M&E Construction;Others (FF & Buildings);Fire Fighting (SG);(10SGC-01) FF Spary Deluge System for BAT/ BBT SGC",1,1,0.0000014077,0.0022380468,0.0012207528,4,1.0,0.0002433422,0.0068493151,0.0030769231,0.002125,0.0057441253,0.0038610039,0.0089686099,1.0,0.066421582
1.3.1.1.4.2.4-4,10SGC-01-40,"Precommissioning/Flush/Clean",7112,"CCGTD1_IPS",TT_Task,"58503",-,-,-,100,TK_Complete,06/11/2019,12/10/2019,09/11/2019,17/10/2019,"10SGC-01-30 FS","10SGC-01-30","10SGC-01-50 FS","10SGC-01-50",223,256,223,256,52,59,52,59,81,,"CCGT D1_Integrated Programme Schedule;M&E;Construction;M&E Construction;Others (FF & Buildings);Fire Fighting (SG);(10SGC-01) FF Spary Deluge System for BAT/ BBT SGC",1,1,0.0000015733,0.002034588,0.0014242116,3,1.0,0.000288462,0.0068493151,0.0030769231,0.002375,0.0052219321,0.0045045045,0.0067264574,1.0,0.0849093556
1.3.1.1.4.2.4-5,10SGC-01-50,"Spray Test",7112,"CCGTD1_IPS",TT_Task,"58503",-,-,-,100,TK_Complete,09/04/2020,14/03/2020,13/04/2020,17/03/2020,"10SGC-01-40 FS,10SGA-02-60 FS","10SGC-01-40,10SGA-02-60","TOP1690 FS","TOP1690",245,278,245,278,57,64,57,65,91,,"CCGT D1_Integrated Programme Schedule;M&E;Construction;M&E Construction;Others (FF & Buildings);Fire Fighting (SG);(10SGC-01) FF Spary Deluge System for BAT/ BBT SGC",2,1,0.000001739,0.0018311292,0.002034588,4,1.0,0.0003579546,0.0136986301,0.0030769231,0.002625,0.0046997389,0.0064350064,0.0089686099,1.0,0.113383815
1.3.1.1.4.2.5,58502,"(00SGM) FF Protection System for UBN",7112,"CCGTD1_IPS",WBS,"58497",,,,100,Complete,08/10/2019,23/05/2019,01/04/2020,12/03/2020,,,,,218,235,244,277,51,55,56,64,,,"CCGT D1_Integrated Programme Schedule;M&E;Construction;M&E Construction;Others (FF & Buildings);Fire Fighting (SG)"
1.3.1.1.4.2.5-1,00SGM-01-10,"Install Pipework/Valves/Sprinklers",7112,"CCGTD1_IPS",TT_Task,"58502",-,-,-,100,TK_Complete,08/10/2019,23/05/2019,05/11/2019,12/10/2019,"SI-SGA4A25 FS,SI-SG-4-56 FS,10EKT20-20 FS,SUB-BOP-160 FS,KD_E03 FS,KD_E04 FS,KD_E05 FS,A1010 FS,KD_D09 FS","SI-SGA4A25,SI-SG-4-56,10EKT20-20,SUB-BOP-160,KD_E03,KD_E04,KD_E05,A1010,KD_D09","00SGM-01-20 SS","00SGM-01-20",218,235,222,256,51,55,52,59,79,,"CCGT D1_Integrated Programme Schedule;M&E;Construction;M&E Construction;Others (FF & Buildings);Fire Fighting (SG);(00SGM) FF Protection System for UBN",9,1,0.0000205777,0.0034587996,0.0126144456,28,0.0,0.0002192517,0.0616438356,0.0030769231,0.0310625,0.0088772846,0.0398970399,0.0627802691,0.0,0.0565505707
1.3.1.1.4.2.5-2,00SGM-01-20,"Install Supports",7112,"CCGTD1_IPS",TT_Task,"58502",-,-,-,100,TK_Complete,19/10/2019,23/05/2019,11/11/2019,10/10/2019,"00SGM-01-10 SS","00SGM-01-10","00SGM-01-30 FS","00SGM-01-30",220,235,223,255,51,55,52,59,80,,"CCGT D1_Integrated Programme Schedule;M&E;Construction;M&E Construction;Others (FF & Buildings);Fire Fighting (SG);(00SGM) FF Protection System for UBN",1,1,0.0000186732,0.0032553408,0.0128179044,23,0.0,0.0002678746,0.0068493151,0.0030769231,0.0281875,0.0083550914,0.0405405405,0.0515695067,0.0,0.0764736877
1.3.1.1.4.2.5-3,00SGM-01-30,"Hydro Test",7112,"CCGTD1_IPS",TT_Task,"58502",-,-,-,100,TK_Complete,11/10/2019,11/10/2019,15/10/2019,15/10/2019,"00SGM-01-20 FS","00SGM-01-20","00SGM-01-40 FS","00SGM-01-40",219,256,219,256,51,59,51,59,79,,"CCGT D1_Integrated Programme Schedule;M&E;Construction;M&E Construction;Others (FF & Buildings);Fire Fighting (SG);(00SGM) FF Protection System for UBN",1,1,0.0000166858,0.003051882,0.0130213632,4,1.0,0.0003093513,0.0068493151,0.0030769231,0.0251875,0.0078328982,0.0411840412,0.0089686099,1.0,0.0934686781
1.3.1.1.4.2.5-4,00SGM-01-40,"Precommissioning/Flush/Clean",7112,"CCGTD1_IPS",TT_Task,"58502",-,-,-,100,TK_Complete,16/10/2019,16/10/2019,19/10/2019,19/10/2019,"00SGM-01-30 FS","00SGM-01-30","00SGM-01-50 FS","00SGM-01-50",220,256,220,257,51,59,51,60,79,,"CCGT D1_Integrated Programme Schedule;M&E;Construction;M&E Construction;Others (FF & Buildings);Fire Fighting (SG);(00SGM) FF Protection System for UBN",1,1,0.0000146156,0.0028484232,0.013224822,3,1.0,0.0003447455,0.0068493151,0.0030769231,0.0220625,0.007310705,0.0418275418,0.0067264574,1.0,0.107971411
1.3.1.1.4.2.5-5,00SGM-01-50,"Spray Test",7112,"CCGTD1_IPS",TT_Task,"58502",-,-,-,100,TK_Complete,28/03/2020,07/03/2020,01/04/2020,12/03/2020,"00SGM-01-40 FS","00SGM-01-40","TOP1740 FS,TOP2770 FS,TOP2780 FS,TOP2790 FS","TOP1740,TOP2770,TOP2780,TOP2790",243,277,244,277,56,64,56,64,89,,"CCGT D1_Integrated Programme Schedule;M&E;Construction;M&E Construction;Others (FF & Buildings);Fire Fighting (SG);(00SGM) FF Protection System for UBN",1,4,0.0000124626,0.0026449644,0.0134282808,4,1.0,0.0003748981,0.0068493151,0.0123076923,0.0188125,0.0067885117,0.0424710425,0.0089686099,1.0,0.1203263903
1.3.1.1.4.2.6,58501,"(10SGA) FF Indoor Hydrants 10SGA Inside 10ULA, 10UHA, 10UMC",7112,"CCGTD1_IPS",WBS,"58497",,,,100,Complete,30/09/2019,17/09/2019,11/12/2019,17/01/2020,,,,,217,252,228,270,50,58,53,63,,,"CCGT D1_Integrated Programme Schedule;M&E;Construction;M&E Construction;Others (FF & Buildings);Fire Fighting (SG)"
1.3.1.1.4.2.6-1,10SGA10,"Install LB Pipework/Valves/Supports",7112,"CCGTD1_IPS",TT_Task,"58501",-,-,-,100,TK_Complete,30/09/2019,17/09/2019,24/10/2019,12/10/2019,"","","10SGA20 FS,10SGA30 SS","10SGA20,10SGA30",217,252,221,256,50,58,51,59,78,,"CCGT D1_Integrated Programme Schedule;M&E;Construction;M&E Construction;Others (FF & Buildings);Fire Fighting (SG);(10SGA) FF Indoor Hydrants 10SGA Inside 10ULA, 10UHA, 10UMC",0,2,0.0,0.0032553408,0.0,24,0.8,0.0000812387,0.0,0.0061538462,0.0,0.0083550914,0.0,0.0538116592,0.8,0.0
1.3.1.1.4.2.6-2,10SGA30,"Install all Hydrants/Supports",7112,"CCGTD1_IPS",TT_Task,"58501",-,-,-,100,TK_Complete,30/09/2019,17/09/2019,12/10/2019,10/10/2019,"10SGA10 SS","10SGA10","10SGA40 FS","10SGA40",217,252,219,255,50,58,51,59,78,,"CCGT D1_Integrated Programme Schedule;M&E;Construction;M&E Construction;Others (FF & Buildings);Fire Fighting (SG);(10SGA) FF Indoor Hydrants 10SGA Inside 10ULA, 10UHA, 10UMC",1,1,0.0000002898,0.0028484232,0.0002034588,12,0.0,0.0001089015,0.0068493151,0.0030769231,0.0004375,0.007310705,0.0006435006,0.0269058296,0.0,0.0113347829
1.3.1.1.4.2.6-3,10SGA40,"Hydro Test",7112,"CCGTD1_IPS",TT_Task,"58501",-,-,-,100,TK_Complete,14/10/2019,14/10/2019,18/10/2019,18/10/2019,"10SGA30 FS,10SGA20 FS","10SGA30,10SGA20","10SGA50 FS","10SGA50",219,256,220,257,51,59,51,59,79,,"CCGT D1_Integrated Programme Schedule;M&E;Construction;M&E Construction;Others (FF & Buildings);Fire Fighting (SG);(10SGA) FF Indoor Hydrants 10SGA Inside 10ULA, 10UHA, 10UMC",2,1,0.0000016148,0.0026449644,0.0006103764,4,1.0,0.0002784011,0.0136986301,0.0030769231,0.0024375,0.0067885117,0.0019305019,0.0089686099,1.0,0.0807868971
1.3.1.1.4.2.6-4,10SGA50,"Precommissioning/Flush/Clean",7112,"CCGTD1_IPS",TT_Task,"58501",-,-,-,100,TK_Complete,18/10/2019,19/10/2019,23/10/2019,17/01/2020,"10SGA40 FS","10SGA40","TOP1470 FS,TOP2740 FS,TOP2750 FS","TOP1470,TOP2740,TOP2750",220,257,221,270,51,60,51,63,80,,"CCGT D1_Integrated Programme Schedule;M&E;Construction;M&E Construction;Others (FF & Buildings);Fire Fighting (SG);(10SGA) FF Indoor Hydrants 10SGA Inside 10ULA, 10UHA, 10UMC",1,3,0.0000019874,0.0024415056,0.0008138352,5,0.0,0.0003182269,0.0068493151,0.0092307692,0.003,0.0062663185,0.0025740026,0.0112107623,0.0,0.0971054481
1.3.1.1.4.2.6-5,10SGA20,"Install SB Pipework/Valves/Supports",7112,"CCGTD1_IPS",TT_Task,"58501",-,-,-,100,TK_Complete,30/09/2019,17/09/2019,18/10/2019,14/10/2019,"10SGA10 FS","10SGA10","10SGA40 FS","10SGA40",217,252,220,256,50,58,51,59,78,,"CCGT D1_Integrated Programme Schedule;M&E;Construction;M&E Construction;Others (FF & Buildings);Fire Fighting (SG);(10SGA) FF Indoor Hydrants 10SGA Inside 10ULA, 10UHA, 10UMC",1,1,0.0000002898,0.0028484232,0.0002034588,18,0.0,0.0001227329,0.0068493151,0.0030769231,0.0004375,0.007310705,0.0006435006,0.0403587444,0.0,0.0170021743
1.3.1.1.4.2.6-6,10SGA60,"Provide TEMP Fire Water Supply",7112,"CCGTD1_IPS",TT_Task,"58501",-,-,-,100,TK_Complete,30/11/2019,20/11/2019,11/12/2019,30/11/2019,"","","TOP1470 FS","TOP1470",226,261,228,263,52,61,53,61,84,,"CCGT D1_Integrated Programme Schedule;M&E;Construction;M&E Construction;Others (FF & Buildings);Fire Fighting (SG);(10SGA) FF Indoor Hydrants 10SGA Inside 10ULA, 10UHA, 10UMC",0,1,0.0,0.0018311292,0.0,11,1.0,0.0000812387,0.0,0.0030769231,0.0,0.0046997389,0.0,0.0246636771,1.0,0.0
1.3.1.1.4.2.7,58500,"(10SGC-02) FF Spray Deluge System 10SGC for Lube Oil / Seal Oil System",7112,"CCGTD1_IPS",WBS,"58497",,,,100,Complete,31/07/2019,05/08/2019,08/04/2020,14/01/2020,,,,,209,246,245,269,48,57,57,62,,,"CCGT D1_Integrated Programme Schedule;M&E;Construction;M&E Construction;Others (FF & Buildings);Fire Fighting (SG)"
1.3.1.1.4.2.7-1,10SGA-02-20,"Install Supports",7112,"CCGTD1_IPS",TT_Task,"58500",-,-,-,100,TK_Complete,31/07/2019,05/08/2019,20/08/2019,09/10/2019,"","","10SGA-02-30 FS,10SGA-02-10 SS,10SGA-02-60 FS","10SGA-02-30,10SGA-02-10,10SGA-02-60",209,246,211,255,48,57,49,59,67,,"CCGT D1_Integrated Programme Schedule;M&E;Construction;M&E Construction;Others (FF & Buildings);Fire Fighting (SG);(10SGC-02) FF Spray Deluge System 10SGC for Lube Oil / Seal Oil System",0,3,0.0,0.0036622584,0.0,20,0.0,0.0000812387,0.0,0.0092307692,0.0,0.0093994778,0.0,0.0448430493,0.0,0.0
1.3.1.1.4.2.7-2,10SGA-02-30,"Hydro Test",7112,"CCGTD1_IPS",TT_Task,"58500",-,-,-,100,TK_Complete,17/10/2019,08/10/2019,26/10/2019,12/10/2019,"10SGA-02-20 FS,10SGA-02-10 FS","10SGA-02-20,10SGA-02-10","10SGA-02-40 FS","10SGA-02-40",220,255,221,256,51,59,51,59,79,,"CCGT D1_Integrated Programme Schedule;M&E;Construction;M&E Construction;Others (FF & Buildings);Fire Fighting (SG);(10SGC-02) FF Spray Deluge System 10SGC for Lube Oil / Seal Oil System",2,1,0.0000103096,0.0024415056,0.0120040692,9,1.0,0.0002398557,0.0136986301,0.0030769231,0.0155625,0.0062663185,0.037966538,0.0201793722,1.0,0.0649930231
1.3.1.1.4.2.7-3,10SGA-02-40,"Precommissioning/Flush/Clean",7112,"CCGTD1_IPS",TT_Task,"58500",-,-,-,100,TK_Complete,26/10/2019,11/10/2019,05/11/2019,19/10/2019,"10SGA-02-30 FS","10SGA-02-30","10SGA-02-50 FS","10SGA-02-50",221,256,222,257,51,59,52,60,80,,"CCGT D1_Integrated Programme Schedule;M&E;Construction;M&E Construction;Others (FF & Buildings);Fire Fighting (SG);(10SGC-02) FF Spray Deluge System 10SGC for Lube Oil / Seal Oil System",1,1,0.0000083222,0.0022380468,0.012207528,10,1.0,0.0002854559,0.0068493151,0.0030769231,0.0125625,0.0057441253,0.0386100386,0.0224215247,1.0,0.0836776092
1.3.1.1.4.2.7-4,10SGA-02-50,"Spray Test",7112,"CCGTD1_IPS",TT_Task,"58500",-,-,-,100,TK_Complete,31/03/2020,04/01/2020,08/04/2020,14/01/2020,"10SGA-02-40 FS,10SGA-02-60 FF","10SGA-02-40,10SGA-02-60","TOP1480 FS,TOP2280 FS","TOP1480,TOP2280",243,268,245,269,56,62,57,62,90,,"CCGT D1_Integrated Programme Schedule;M&E;Construction;M&E Construction;Others (FF & Buildings);Fire Fighting (SG);(10SGC-02) FF Spray Deluge System 10SGC for Lube Oil / Seal Oil System",2,2,0.000006459,0.002034588,0.0126144456,8,1.0,0.0003864778,0.0136986301,0.0061538462,0.00975,0.0052219321,0.0398970399,0.0179372197,1.0,0.1250711143
1.3.1.1.4.2.7-5,10SGA-02-10,"Install Deluge Pipework/Valves/Sprinklers",7112,"CCGTD1_IPS",TT_Task,"58500",-,-,-,100,TK_Complete,08/08/2019,08/08/2019,28/08/2019,11/10/2019,"SI-SGA4A25 FS,SI-SG-4-56 FS,SUB-BOP-160 FS,KD_E03 FS,KD_E04 FS,KD_E05 FS,A1010 FS,10SGA-02-20 SS","SI-SGA4A25,SI-SG-4-56,SUB-BOP-160,KD_E03,KD_E04,KD_E05,A1010,10SGA-02-20","10SGA-02-30 FS","10SGA-02-30",210,246,213,256,49,57,49,59,69,,"CCGT D1_Integrated Programme Schedule;M&E;Construction;M&E Construction;Others (FF & Buildings);Fire Fighting (SG);(10SGC-02) FF Spray Deluge System 10SGC for Lube Oil / Seal Oil System",8,1,0.0000121313,0.0026449644,0.0118006104,20,0.0,0.0001714214,0.0547945205,0.0030769231,0.0183125,0.0067885117,0.0373230373,0.0448430493,0.0,0.0369521817
1.3.1.1.4.2.7-6,10SGA-02-60,"Provide TEMP Fire Water Supply",7112,"CCGTD1_IPS",TT_Task,"58500",-,-,-,100,TK_Complete,30/11/2019,20/11/2019,20/12/2019,03/01/2020,"10SGA-02-20 FS","10SGA-02-20","10SGA-02-50 FF,TOP2250 FS,10SGC-01-50 FS","10SGA-02-50,TOP2250,10SGC-01-50",226,261,229,268,52,61,53,62,84,,"CCGT D1_Integrated Programme Schedule;M&E;Construction;M&E Construction;Others (FF & Buildings);Fire Fighting (SG);(10SGC-02) FF Spray Deluge System 10SGC for Lube Oil / Seal Oil System",1,3,0.0000005797,0.0028484232,0.0002034588,20,0.0,0.0001094661,0.0068493151,0.0092307692,0.000875,0.007310705,0.0006435006,0.0448430493,0.0,0.011566105
1.3.1.1.4.2.8,58499,"(10SGC-02) FF Spray Deluge Systems for 00UEH/UEJ/UEK Area",7112,"CCGTD1_IPS",WBS,"58497",,,,100,Complete,31/07/2019,05/08/2019,08/11/2019,14/01/2020,,,,,209,246,223,269,48,57,52,62,,,"CCGT D1_Integrated Programme Schedule;M&E;Construction;M&E Construction;Others (FF & Buildings);Fire Fighting (SG)"
1.3.1.1.4.2.8-1,10SGC-02-10,"Install Deluge Pipework/Valves/Sprinklers",7112,"CCGTD1_IPS",TT_Task,"58499",-,-,-,100,TK_Complete,31/07/2019,05/08/2019,28/08/2019,11/10/2019,"KD_E03 FS,KD_E05 FS","KD_E03,KD_E05","10SGC-02-20 FS","10SGC-02-20",209,246,213,256,48,57,49,59,67,,"CCGT D1_Integrated Programme Schedule;M&E;Construction;M&E Construction;Others (FF & Buildings);Fire Fighting (SG);(10SGC-02) FF Spray Deluge Systems for 00UEH/UEJ/UEK Area",2,1,0.0000004968,0.0026449644,0.0006103764,28,0.0,0.0000853012,0.0136986301,0.0030769231,0.00075,0.0067885117,0.0019305019,0.0627802691,0.0,0.0016645913
1.3.1.1.4.2.8-2,10SGC-02-20,"Install Supports",7112,"CCGTD1_IPS",TT_Task,"58499",-,-,-,100,TK_Complete,29/08/2019,07/08/2019,09/09/2019,12/10/2019,"10SGC-02-10 FS","10SGC-02-10","10SGC-02-30 FS","10SGC-02-30",213,246,214,256,49,57,50,59,70,,"CCGT D1_Integrated Programme Schedule;M&E;Construction;M&E Construction;Others (FF & Buildings);Fire Fighting (SG);(10SGC-02) FF Spray Deluge Systems for 00UEH/UEJ/UEK Area",1,1,0.0000008695,0.0024415056,0.0008138352,11,0.0,0.0001538526,0.0068493151,0.0030769231,0.0013125,0.0062663185,0.0025740026,0.0246636771,0.0,0.0297534205
1.3.1.1.4.2.8-3,10SGC-02-30,"Hydro Test",7112,"CCGTD1_IPS",TT_Task,"58499",-,-,-,100,TK_Complete,25/10/2019,10/10/2019,30/10/2019,12/10/2019,"10SGC-02-20 FS","10SGC-02-20","10SGC-02-40 FS","10SGC-02-40",221,255,222,256,51,59,51,59,80,,"CCGT D1_Integrated Programme Schedule;M&E;Construction;M&E Construction;Others (FF & Buildings);Fire Fighting (SG);(10SGC-02) FF Spray Deluge Systems for 00UEH/UEJ/UEK Area",1,1,0.0000011593,0.0022380468,0.001017294,5,1.0,0.0002121891,0.0068493151,0.0030769231,0.00175,0.0057441253,0.0032175032,0.0112107623,1.0,0.0536566647
1.3.1.1.4.2.8-4,10SGC-02-40,"Precommissioning/Flush/Clean",7112,"CCGTD1_IPS",TT_Task,"58499",-,-,-,100,TK_Complete,30/10/2019,10/10/2019,04/11/2019,14/10/2019,"10SGC-02-30 FS","10SGC-02-30","10SGC-02-50 FS","10SGC-02-50",222,255,222,256,51,59,51,59,80,,"CCGT D1_Integrated Programme Schedule;M&E;Construction;M&E Construction;Others (FF & Buildings);Fire Fighting (SG);(10SGC-02) FF Spray Deluge Systems for 00UEH/UEJ/UEK Area",1,1,0.0000013663,0.002034588,0.0012207528,5,1.0,0.0002618896,0.0068493151,0.0030769231,0.0020625,0.0052219321,0.0038610039,0.0112107623,1.0,0.0740213697
1.3.1.1.4.2.8-5,10SGC-02-50,"Spray Test",7112,"CCGTD1_IPS",TT_Task,"58499",-,-,-,100,TK_Complete,04/11/2019,12/10/2019,08/11/2019,14/01/2020,"10SGC-02-40 FS","10SGC-02-40","TOP1480 FS","TOP1480",222,256,223,269,51,59,52,62,81,,"CCGT D1_Integrated Programme Schedule;M&E;Construction;M&E Construction;Others (FF & Buildings);Fire Fighting (SG);(10SGC-02) FF Spray Deluge Systems for 00UEH/UEJ/UEK Area",1,1,0.0000014905,0.0018311292,0.0014242116,4,0.0,0.0003042679,0.0068493151,0.0030769231,0.00225,0.0046997389,0.0045045045,0.0089686099,0.0,0.0913857739
1.3.1.1.4.2.9,58498,"(00SGA-01) Fire Pump Station, Ring Main, Outdoors Hydrants",7112,"CCGTD1_IPS",WBS,"58497",,,,100,Complete,09/02/2019,15/01/2019,14/04/2020,17/01/2020,,,,,184,217,245,270,43,50,57,63,,,"CCGT D1_Integrated Programme Schedule;M&E;Construction;M&E Construction;Others (FF & Buildings);Fire Fighting (SG)"
1.3.1.1.4.2.9-1,00SGA-01-10,"Install Skids/Euipment (Firehouse)",7112,"CCGTD1_IPS",TT_Task,"58498",-,-,-,100,TK_Complete,30/09/2019,12/10/2019,17/10/2019,19/10/2019,"KD_D06 FS,KD_E03 FS,KD_E05 FS,A1010 FS","KD_D06,KD_E03,KD_E05,A1010","00SGA-01-40 FF,00SGA-01-60 FS,00SGA-01-20 FS","00SGA-01-40,00SGA-01-60,00SGA-01-20",217,256,220,257,50,59,51,60,78,,"CCGT D1_Integrated Programme Schedule;M&E;Construction;M&E Construction;Others (FF & Buildings);Fire Fighting (SG);(00SGA-01) Fire Pump Station, Ring Main, Outdoors Hydrants",4,3,0.000001601,0.0036622584,0.0008138352,17,1.0,0.000085907,0.0273972603,0.0092307692,0.0024166667,0.0093994778,0.0025740026,0.0381165919,1.0,0.0019128174
1.3.1.1.4.2.9-2,00SGA-01-20,"Install LB Pipework/Valves/Supports (Firehouse)",7112,"CCGTD1_IPS",TT_Task,"58498",-,-,-,100,TK_Complete,18/10/2019,09/10/2019,29/10/2019,30/11/2019,"00SGA-01-10 FS","00SGA-01-10","00SGA-01-30 FS,00SGA-01-70 FS","00SGA-01-30,00SGA-01-70",220,255,221,263,51,59,51,61,80,,"CCGT D1_Integrated Programme Schedule;M&E;Construction;M&E Construction;Others (FF & Buildings);Fire Fighting (SG);(00SGA-01) Fire Pump Station, Ring Main, Outdoors Hydrants",1,2,0.0000010489,0.0028484232,0.001017294,11,0.0,0.0000862664,0.0068493151,0.0061538462,0.0015833333,0.007310705,0.0032175032,0.0246636771,0.0,0.0020600694
1.3.1.1.4.2.9-3,00SGA-01-30,"Install SB Pipework/Valves/Supports (Firehouse)",7112,"CCGTD1_IPS",TT_Task,"58498",-,-,-,100,TK_Complete,24/10/2019,11/10/2019,04/11/2019,30/11/2019,"00SGA-01-20 FS","00SGA-01-20","00SGA-01-70 FS,00SGA-01-90 FS","00SGA-01-70,00SGA-01-90",221,256,222,263,51,59,51,61,80,,"CCGT D1_Integrated Programme Schedule;M&E;Construction;M&E Construction;Others (FF & Buildings);Fire Fighting (SG);(00SGA-01) Fire Pump Station, Ring Main, Outdoors Hydrants",1,2,0.0000008281,0.0026449644,0.0012207528,11,0.0,0.00011636,0.0068493151,0.0061538462,0.00125,0.0067885117,0.0038610039,0.0246636771,0.0,0.0143908976
1.3.1.1.4.2.9-4,00SGA-01-40,"Install Ring Main",7112,"CCGTD1_IPS",TT_Task,"58498",-,-,-,100,TK_Complete,09/02/2019,15/01/2019,13/06/2019,17/01/2020,"00SGA-01-10 FF","00SGA-01-10","00SGA-01-50 FS,00SGA-01-70 FF","00SGA-01-50,00SGA-01-70",184,217,202,270,43,50,47,63,47,,"CCGT D1_Integrated Programme Schedule;M&E;Construction;M&E Construction;Others (FF & Buildings);Fire Fighting (SG);(00SGA-01) Fire Pump Station, Ring Main, Outdoors Hydrants",1,2,0.0000004692,0.0024415056,0.001017294,124,0.0,0.000137914,0.0068493151,0.0061538462,0.0007083333,0.0062663185,0.0032175032,0.2780269058,0.0,0.0232226002
1.3.1.1.4.2.9-5,00SGA-01-50,"Install all Hydrants/Supports",7112,"CCGTD1_IPS",TT_Task,"58498",-,-,-,100,TK_Complete,14/10/2019,14/10/2019,30/10/2019,06/01/2020,"00SGA-01-40 FS","00SGA-01-40","00SGA-01-70 FS","00SGA-01-70",219,256,222,268,51,59,51,62,79,,"CCGT D1_Integrated Programme Schedule;M&E;Construction;M&E Construction;Others (FF & Buildings);Fire Fighting (SG);(00SGA-01) Fire Pump Station, Ring Main, Outdoors Hydrants",1,1,0.0,0.0022380468,0.0012207528,16,0.0,0.0001483171,0.0068493151,0.0030769231,0.0,0.0057441253,0.0038610039,0.0358744395,0.0,0.0274852517
1.3.1.1.4.2.9-6,00SGA-01-60,"EC+I",7112,"CCGTD1_IPS",TT_Task,"58498",-,-,-,100,TK_Complete,12/10/2019,09/10/2019,06/11/2019,18/10/2019,"SI-BZK4-58 FS,SI-BZK4-25 FS,00SGA-01-10 FS,CP-BZP7A15 FS","SI-BZK4-58,SI-BZK4-25,00SGA-01-10,CP-BZP7A15","00SGA-01-70 FS","00SGA-01-70",219,255,223,257,51,59,52,59,79,,"CCGT D1_Integrated Programme Schedule;M&E;Construction;M&E Construction;Others (FF & Buildings);Fire Fighting (SG);(00SGA-01) Fire Pump Station, Ring Main, Outdoors Hydrants",4,1,0.0000038644,0.0022380468,0.0069175992,25,1.0,0.0001160875,0.0273972603,0.0030769231,0.0058333333,0.0057441253,0.0218790219,0.0560538117,1.0,0.0142792289
1.3.1.1.4.2.9-7,00SGA-01-70,"Hydro Test",7112,"CCGTD1_IPS",TT_Task,"58498",-,-,-,100,TK_Complete,02/04/2020,07/01/2020,14/04/2020,17/01/2020,"00SGA-01-60 FS,00SGA-01-30 FS,00SGA-01-50 FS,00SGA-01-20 FS,00SGA-01-40 FF","00SGA-01-60,00SGA-01-30,00SGA-01-50,00SGA-01-20,00SGA-01-40","00SGA-01-80 FF","00SGA-01-80",244,268,245,270,56,62,57,63,90,,"CCGT D1_Integrated Programme Schedule;M&E;Construction;M&E Construction;Others (FF & Buildings);Fire Fighting (SG);(00SGA-01) Fire Pump Station, Ring Main, Outdoors Hydrants",5,1,0.000004513,0.002034588,0.0079348932,12,1.0,0.0004489673,0.0342465753,0.0030769231,0.0068125,0.0052219321,0.0250965251,0.0269058296,1.0,0.1506760847
1.3.1.1.4.2.9-8,00SGA-01-80,"Precommissioning/Flush/Clean",7112,"CCGTD1_IPS",TT_Task,"58498",-,-,-,100,TK_Complete,08/04/2020,12/01/2020,14/04/2020,17/01/2020,"00SGA-01-70 FF,00SGA-01-90 FF","00SGA-01-70,00SGA-01-90","TOP2250 FS","TOP2250",245,269,245,270,57,62,57,63,91,,"CCGT D1_Integrated Programme Schedule;M&E;Construction;M&E Construction;Others (FF & Buildings);Fire Fighting (SG);(00SGA-01) Fire Pump Station, Ring Main, Outdoors Hydrants",2,1,0.0000033537,0.0018311292,0.0083418108,6,1.0,0.0005709374,0.0136986301,0.0030769231,0.0050625,0.0046997389,0.0263835264,0.0134529148,1.0,0.2006531021
1.3.1.1.4.2.9-9,00SGA-01-90,"Paint",7112,"CCGTD1_IPS",TT_Task,"58498",-,-,-,100,TK_Complete,05/11/2019,12/10/2019,15/11/2019,17/01/2020,"00SGA-01-30 FS","00SGA-01-30","TOP1470 FS,00SGA-01-80 FF","TOP1470,00SGA-01-80",222,256,224,270,52,59,52,63,81,,"CCGT D1_Integrated Programme Schedule;M&E;Construction;M&E Construction;Others (FF & Buildings);Fire Fighting (SG);(00SGA-01) Fire Pump Station, Ring Main, Outdoors Hydrants",1,2,0.0000009937,0.0022380468,0.0014242116,10,0.0,0.0001262593,0.0068493151,0.0061538462,0.0015,0.0057441253,0.0045045045,0.0224215247,0.0,0.0184470801
1.3.1.1.5,58468,"Electrical & I&C",7112,"CCGTD1_IPS",WBS,"58325",,,,100,Complete,02/01/2019,22/10/2018,08/04/2020,,,,,,179,205,245,,41,47,57,,,,"CCGT D1_Integrated Programme Schedule;M&E;Construction;M&E Construction"
1.3.1.1.5.1,58491,"General Electrical Erection",7112,"CCGTD1_IPS",WBS,"58468",,,,100,Complete,02/01/2019,22/10/2018,08/04/2020,,,,,,179,205,245,,41,47,57,,,,"CCGT D1_Integrated Programme Schedule;M&E;Construction;M&E Construction;Electrical & I&C"
1.3.1.1.5.1.1,58495,"Plant Security System",7112,"CCGTD1_IPS",WBS,"58491",,,,100,Complete,31/08/2019,20/08/2019,08/04/2020,18/01/2020,,,,,213,248,245,270,49,58,57,63,,,"CCGT D1_Integrated Programme Schedule;M&E;Construction;M&E Construction;Electrical & I&C;General Electrical Erection"
1.3.1.1.5.1.1-1,CP-CYP7A25,"Install Equipment",7112,"CCGTD1_IPS",TT_Task,"58495",-,-,-,100,TK_Complete,31/08/2019,20/08/2019,30/09/2019,13/01/2020,"SI-CYP4-25 FS,CP-CYP7A15 FF,SI-CYA4-25 FS","SI-CYP4-25,CP-CYP7A15,SI-CYA4-25","CP-CYP7A35 FS,CP-CYP7A45 FF","CP-CYP7A35,CP-CYP7A45",213,248,217,269,49,58,50,62,71,,"CCGT D1_Integrated Programme Schedule;M&E;Construction;M&E Construction;Electrical & I&C;General Electrical Erection;Plant Security System",3,2,0.0000019253,0.0026449644,0.0054933876,30,0.0,0.0002006447,0.0205479452,0.0061538462,0.00290625,0.0067885117,0.0173745174,0.067264574,0.0,0.0489263747
1.3.1.1.5.1.1-2,CP-CYP7A35,"EC+I",7112,"CCGTD1_IPS",TT_Task,"58495",-,-,-,100,TK_Complete,25/09/2019,20/08/2019,19/10/2019,30/11/2019,"CP-CYP7A25 FS","CP-CYP7A25","CP-CYP7A45 FF","CP-CYP7A45",217,248,220,263,50,58,51,61,77,,"CCGT D1_Integrated Programme Schedule;M&E;Construction;M&E Construction;Electrical & I&C;General Electrical Erection;Plant Security System",1,1,0.0,0.0024415056,0.0056968464,24,0.0,0.00022762,0.0068493151,0.0030769231,0.0,0.0062663185,0.018018018,0.0538116592,0.0,0.059979447
1.3.1.1.5.1.1-3,CP-CYP7A45,"Precommissioning",7112,"CCGTD1_IPS",TT_Task,"58495",-,-,-,100,TK_Complete,04/04/2020,14/01/2020,08/04/2020,18/01/2020,"CP-CYP7A35 FF,CP-CYP7A25 FF,CP-CYP7A15 FF","CP-CYP7A35,CP-CYP7A25,CP-CYP7A15","TOP1040 FS,TOP2630 FS","TOP1040,TOP2630",244,269,245,270,57,62,57,63,90,,"CCGT D1_Integrated Programme Schedule;M&E;Construction;M&E Construction;Electrical & I&C;General Electrical Erection;Plant Security System",3,2,0.0000042646,0.0022380468,0.0059003052,4,1.0,0.0003094801,0.0205479452,0.0061538462,0.0064375,0.0057441253,0.0186615187,0.0089686099,1.0,0.0935214772
1.3.1.1.5.1.1-4,CP-CYP7A15,"Erection Security Other Buildings (Except UCA)",7112,"CCGTD1_IPS",TT_Task,"58495",-,-,-,100,TK_Complete,30/11/2019,04/11/2019,28/12/2019,18/01/2020,"SI-CYP4-25 FS,SUB-EIC-180 FS","SI-CYP4-25,SUB-EIC-180","CP-CYP7A25 FF,CP-CYP7A45 FF","CP-CYP7A25,CP-CYP7A45",226,259,230,270,52,60,53,63,84,,"CCGT D1_Integrated Programme Schedule;M&E;Construction;M&E Construction;Electrical & I&C;General Electrical Erection;Plant Security System",2,2,0.000005072,0.0028484232,0.00508647,28,0.0,0.0001001815,0.0136986301,0.0061538462,0.00765625,0.007310705,0.0160875161,0.0627802691,0.0,0.0077617537
1.3.1.1.5.1.2,58494,"(10UBA) PCC UBA81 & Cabinet 10UBA Building",7112,"CCGTD1_IPS",WBS,"58491",,,,,NotStart,,,,,,,,,,,,,,,,,,,"CCGT D1_Integrated Programme Schedule;M&E;Construction;M&E Construction;Electrical & I&C;General Electrical Erection"
1.3.1.1.5.1.3,58493,"MV + LV Cables",7112,"CCGTD1_IPS",WBS,"58491",,,,100,Complete,14/02/2019,20/02/2019,21/09/2019,09/09/2019,,,,,185,222,216,251,43,51,50,58,,,"CCGT D1_Integrated Programme Schedule;M&E;Construction;M&E Construction;Electrical & I&C;General Electrical Erection"
1.3.1.1.5.1.3-1,CP-BZK7A25,"Cabling From 10UBA Building to UCA / UYC",7112,"CCGTD1_IPS",TT_Task,"58493",-,-,-,100,TK_Complete,03/06/2019,03/05/2019,02/07/2019,07/09/2019,"SI-BZK4-58 FS,SI-BZK4-52 FS,SI-BZP4-25 FS,SI-BZK4-25 FS,SUB-EIC-180 FS,SI-BZK4-60 FS,CP1BZK7B25 FS","SI-BZK4-58,SI-BZK4-52,SI-BZP4-25,SI-BZK4-25,SUB-EIC-180,SI-BZK4-60,CP1BZK7B25","ECS19.1420 FS","ECS19.1420",200,233,204,251,46,54,47,58,61,,"CCGT D1_Integrated Programme Schedule;M&E;Construction;M&E Construction;Electrical & I&C;General Electrical Erection;MV + LV Cables",7,1,0.0000069145,0.0042726348,0.0063072228,29,0.0,0.0001965326,0.0479452055,0.0030769231,0.0104375,0.0109660574,0.0199485199,0.0650224215,0.0,0.0472414587
1.3.1.1.5.1.3-2,CP1BZK7B25,"Cabling Between 10UBA Building",7112,"CCGTD1_IPS",TT_Task,"58493",-,-,-,100,TK_Complete,14/02/2019,20/02/2019,18/03/2019,31/05/2019,"SUB-EIC-180 FS,SI-BZP4-25 FS,SI-BZK4-52 FS,SI-BZK4-25 FS,KD_D02 FS","SUB-EIC-180,SI-BZP4-25,SI-BZK4-52,SI-BZK4-25,KD_D02","CP-BZK7A25 FS","CP-BZK7A25",185,222,189,237,43,51,44,55,47,,"CCGT D1_Integrated Programme Schedule;M&E;Construction;M&E Construction;Electrical & I&C;General Electrical Erection;MV + LV Cables",5,1,0.0000005383,0.0044760936,0.0056968464,32,0.0,0.0000939516,0.0342465753,0.0030769231,0.0008125,0.0114882507,0.018018018,0.0717488789,0.0,0.0052090934
1.3.1.1.5.1.3-3,CP1BZK7A25,"Cabling From 10UBA (Switchgear) Building to UBX/UBE/UBF (Transformers)",7112,"CCGTD1_IPS",TT_Task,"58493",-,-,-,100,TK_Complete,16/04/2019,16/04/2019,27/05/2019,07/09/2019,"SI-BZP4-25 FS,SI-BZK4-25 FS,KD_D02 FS,SUB-EIC-180 FS,CP1BZP7C15 FS,SI-BZK4-52 FS","SI-BZP4-25,SI-BZK4-25,KD_D02,SUB-EIC-180,CP1BZP7C15,SI-BZK4-52","10SEE2-80 FS,10BAT120 FS,10SFC-80 FS","10SEE2-80,10BAT120,10SFC-80",193,230,199,251,45,53,46,58,54,,"CCGT D1_Integrated Programme Schedule;M&E;Construction;M&E Construction;Electrical & I&C;General Electrical Erection;MV + LV Cables",6,3,0.0000630534,0.0130213632,0.0063072228,41,0.0,0.0001832557,0.0410958904,0.0092307692,0.0951803419,0.0334203655,0.0199485199,0.0919282511,0.0,0.041801284
1.3.1.1.5.1.3-4,CP1BZK7J25,"Cabling From 10UBA Building to USA01-03",7112,"CCGTD1_IPS",TT_Task,"58493",-,-,-,100,TK_Complete,05/06/2019,14/06/2019,11/07/2019,07/09/2019,"SUB-EIC-180 FS,SI-BZK4-25 FS,SI-BZK4-52 FS,KD_D02 FS,SI-BZP4-25 FS,CP1BZP7D15 FS","SUB-EIC-180,SI-BZK4-25,SI-BZK4-52,KD_D02,SI-BZP4-25,CP1BZP7D15","CP1BZK7D25 FF,SC1350 FS","CP1BZK7D25,SC1350",201,239,206,251,46,55,48,58,61,,"CCGT D1_Integrated Programme Schedule;M&E;Construction;M&E Construction;Electrical & I&C;General Electrical Erection;MV + LV Cables",6,2,0.0000017549,0.0034587996,0.0063072228,36,0.0,0.0001822839,0.0410958904,0.0061538462,0.0026489984,0.0088772846,0.0199485199,0.0807174888,0.0,0.0414030882
1.3.1.1.5.1.3-5,CP-BZK7I25,"Cabling From 10UBA Building to UST",7112,"CCGTD1_IPS",TT_Task,"58493",-,-,-,100,TK_Complete,01/04/2019,08/04/2019,06/05/2019,05/09/2019,"KD_D02 FS,SI-BZK4-25 FS,SI-BZP4-25 FS,SI-BZK4-52 FS,SUB-EIC-180 FS","KD_D02,SI-BZK4-25,SI-BZP4-25,SI-BZK4-52,SUB-EIC-180","","",191,229,196,250,44,53,45,58,51,,"CCGT D1_Integrated Programme Schedule;M&E;Construction;M&E Construction;Electrical & I&C;General Electrical Erection;MV + LV Cables",5,0,0.0,0.0,0.0056968464,35,0.0,0.0000951435,0.0342465753,0.0,0.0,0.0,0.018018018,0.0784753363,0.0,0.0056974459
1.3.1.1.5.1.3-6,CP-BZK7G25,"Cabling From 10UBA (Switchgear) Building to 10UBN Diesel Generator",7112,"CCGTD1_IPS",TT_Task,"58493",-,-,-,100,TK_Complete,18/07/2019,01/06/2019,21/08/2019,06/09/2019,"SI-BZP4-25 FS,SUB-EIC-180 FS,00XKA40 FS,SI-BZK4-25 FS,SI-BZK4-52 FS,KD_D02 FS","SI-BZP4-25,SUB-EIC-180,00XKA40,SI-BZK4-25,SI-BZK4-52,KD_D02","SC1200 FS","SC1200",207,237,212,251,48,55,49,58,66,,"CCGT D1_Integrated Programme Schedule;M&E;Construction;M&E Construction;Electrical & I&C;General Electrical Erection;MV + LV Cables",6,1,0.0000028649,0.0018311292,0.0069175992,34,0.0,0.0002529733,0.0410958904,0.0030769231,0.0043245994,0.0046997389,0.0218790219,0.0762331839,0.0,0.070367933
1.3.1.1.5.1.3-7,CP-BZK7B2,"Cabling From 10UBA Building to UAA",7112,"CCGTD1_IPS",TT_Task,"58493",-,-,-,100,TK_Complete,30/04/2019,06/05/2019,04/06/2019,07/09/2019,"SI-BZK4-52 FS,SI-BZP4-25 FS,SUB-EIC-180 FS,SI-BZK4-25 FS,KD_D02 FS","SI-BZK4-52,SI-BZP4-25,SUB-EIC-180,SI-BZK4-25,KD_D02","","",195,233,200,251,45,54,46,58,56,,"CCGT D1_Integrated Programme Schedule;M&E;Construction;M&E Construction;Electrical & I&C;General Electrical Erection;MV + LV Cables",5,0,0.0,0.0,0.0056968464,35,0.0,0.0000951435,0.0342465753,0.0,0.0,0.0,0.018018018,0.0784753363,0.0,0.0056974459
1.3.1.1.5.1.3-8,CP-BZK7C25,"Cabling 10UBA Building to 00UGD/UGA/UGC",7112,"CCGTD1_IPS",TT_Task,"58493",-,-,-,100,TK_Complete,27/05/2019,02/05/2019,02/07/2019,31/05/2019,"SI-BZK4-52 FS,SI-BZP4-25 FS,SI-BZK4-25 FS,CP-BZP7A15 FS,SUB-EIC-180 FS,KD_D02 FS","SI-BZK4-52,SI-BZP4-25,SI-BZK4-25,CP-BZP7A15,SUB-EIC-180,KD_D02","CP1BZK7D25 FF,SC1350 FS","CP1BZK7D25,SC1350",199,232,204,237,46,54,47,55,60,,"CCGT D1_Integrated Programme Schedule;M&E;Construction;M&E Construction;Electrical & I&C;General Electrical Erection;MV + LV Cables",6,2,0.0000014098,0.0034587996,0.0063072228,36,1.0,0.0001258588,0.0410958904,0.0061538462,0.0021281651,0.0088772846,0.0199485199,0.0807174888,1.0,0.0182829766
1.3.1.1.5.1.3-9,CP-BZK7F25,"Cabling 10UBA Building to UEL/UEH/UEJ",7112,"CCGTD1_IPS",TT_Task,"58493",-,-,-,100,TK_Complete,30/04/2019,03/05/2019,10/06/2019,07/09/2019,"SUB-EIC-180 FS,KD_D02 FS,SI-BZK4-52 FS,SI-BZP4-25 FS,SI-BZK4-25 FS","SUB-EIC-180,KD_D02,SI-BZK4-52,SI-BZP4-25,SI-BZK4-25","","",195,233,201,251,45,54,47,58,56,,"CCGT D1_Integrated Programme Schedule;M&E;Construction;M&E Construction;Electrical & I&C;General Electrical Erection;MV + LV Cables",5,0,0.0,0.0,0.0056968464,41,0.0,0.0000975271,0.0342465753,0.0,0.0,0.0,0.018018018,0.0919282511,0.0,0.0066741509
1.3.1.1.5.1.3-10,CP1BZK7D25,"Cabling 10UBA (Switchgear) Building to 10UEN (Gas Filter/Preheating)",7112,"CCGTD1_IPS",TT_Task,"58493",-,-,-,100,TK_Complete,17/06/2019,17/05/2019,12/07/2019,02/09/2019,"SI-BZK4-25 FS,CP-BZP7A15 FS,10EKT20-20 FS,CP-BZP7B15 FS,SI-BZP4-25 FS,KD_D02 FS,SUB-EIC-180 FS,CP-BZK7C25 FF,CP1BZK7J25 FF","SI-BZK4-25,CP-BZP7A15,10EKT20-20,CP-BZP7B15,SI-BZP4-25,KD_D02,SUB-EIC-180,CP-BZK7C25,CP1BZK7J25","10EKT20-80 FS","10EKT20-80",202,235,206,250,47,54,48,58,63,,"CCGT D1_Integrated Programme Schedule;M&E;Construction;M&E Construction;Electrical & I&C;General Electrical Erection;MV + LV Cables",9,1,0.00000699,0.0028484232,0.0079348932,25,0.0,0.0004022225,0.0616438356,0.0030769231,0.0105515301,0.007310705,0.0250965251,0.0560538117,0.0,0.1315224782
1.3.1.1.5.1.3-11,CP-BZK7E25,"Cabling 10UBA Building to USG",7112,"CCGTD1_IPS",TT_Task,"58493",-,-,-,100,TK_Complete,30/04/2019,08/05/2019,04/06/2019,07/09/2019,"KD_D02 FS,SI-BZK4-52 FS,SI-BZP4-25 FS,SUB-EIC-180 FS,SI-BZK4-25 FS","KD_D02,SI-BZK4-52,SI-BZP4-25,SUB-EIC-180,SI-BZK4-25","","",195,233,200,251,45,54,46,58,56,,"CCGT D1_Integrated Programme Schedule;M&E;Construction;M&E Construction;Electrical & I&C;General Electrical Erection;MV + LV Cables",5,0,0.0,0.0,0.0056968464,35,0.0,0.0000951435,0.0342465753,0.0,0.0,0.0,0.018018018,0.0784753363,0.0,0.0056974459
1.3.1.1.5.1.3-12,CP-BZK7H25,"Cabling From 10UBA Building to ULA (FW Pumps)/UHA (HRSG) AND UHW (Blow Down Tank)",7112,"CCGTD1_IPS",TT_Task,"58493",-,-,-,100,TK_Complete,24/05/2019,24/05/2019,10/07/2019,06/09/2019,"SI-BZP4-25 FS,SI-BZK4-25 FS,KD_D02 FS,SUB-EIC-180 FS,SI-BZK4-52 FS,10LAC20 FS,A1910 FS","SI-BZP4-25,SI-BZK4-25,KD_D02,SUB-EIC-180,SI-BZK4-52,10LAC20,A1910","10LAC90 FS,SC1350 FS","10LAC90,SC1350",199,236,206,251,46,55,48,58,59,,"CCGT D1_Integrated Programme Schedule;M&E;Construction;M&E Construction;Electrical & I&C;General Electrical Erection;MV + LV Cables",7,2,0.0000186773,0.0028484232,0.0185147508,47,0.0,0.00032974,0.0479452055,0.0061538462,0.0281937576,0.007310705,0.0585585586,0.1053811659,0.0,0.1018229338
1.3.1.1.5.1.3-13,CP1BZK7B35,"MV and LV Cable Pulling",7112,"CCGTD1_IPS",TT_Task,"58493",-,-,-,100,TK_Complete,30/04/2019,10/05/2019,21/09/2019,09/09/2019,"","","","",195,234,216,251,45,54,50,58,56,,"CCGT D1_Integrated Programme Schedule;M&E;Construction;M&E Construction;Electrical & I&C;General Electrical Erection;MV + LV Cables",0,0,0.0,0.0,0.0,144,1.0,0.0000812387,0.0,0.0,0.0,0.0,0.0,0.3228699552,1.0,0.0
1.3.1.1.5.1.4,58492,"Cable Support System",7112,"CCGTD1_IPS",WBS,"58491",,,,100,Complete,02/01/2019,22/10/2018,27/06/2019,19/06/2019,,,,,179,205,204,239,41,47,47,55,,,"CCGT D1_Integrated Programme Schedule;M&E;Construction;M&E Construction;Electrical & I&C;General Electrical Erection"
1.3.1.1.5.1.4-1,CP1BZP7A15,"Erection Cable Trays UMC to Generator (1f)",7112,"CCGTD1_IPS",TT_Task,"58492",-,-,-,100,TK_Complete,02/01/2019,13/11/2018,22/02/2019,15/05/2019,"SI-BZP4B25 FS,KD_D02 FS,SUB-EIC-180 FS,SI-BZP4-27 FS,10MKA1090 FS","SI-BZP4B25,KD_D02,SUB-EIC-180,SI-BZP4-27,10MKA1090","","",179,208,186,234,41,48,43,54,43,,"CCGT D1_Integrated Programme Schedule;M&E;Construction;M&E Construction;Electrical & I&C;General Electrical Erection;Cable Support System",5,0,0.0,0.0,0.0140386572,51,0.0,0.0001394329,0.0342465753,0.0,0.0,0.0,0.0444015444,0.1143497758,0.0,0.0238449613
1.3.1.1.5.1.4-2,CP1BZP7C15,"Erection Cable Trays 10UBA Building to UBX/UBE/UBF",7112,"CCGTD1_IPS",TT_Task,"58492",-,-,-,100,TK_Complete,02/01/2019,22/10/2018,20/02/2019,15/05/2019,"SI-BZP4B25 FS,SUB-EIC-180 FS,KD_D02 FS,SI-BZP4-27 FS","SI-BZP4B25,SUB-EIC-180,KD_D02,SI-BZP4-27","CP1BZK7A25 FS","CP1BZK7A25",179,205,186,234,41,47,43,54,43,,"CCGT D1_Integrated Programme Schedule;M&E;Construction;M&E Construction;Electrical & I&C;General Electrical Erection;Cable Support System",4,1,0.000004352,0.013224822,0.0054933876,49,0.0,0.0001007132,0.0273972603,0.0030769231,0.0065694444,0.0339425587,0.0173745174,0.1098654709,0.0,0.0079796401
1.3.1.1.5.1.4-3,CP1BZP7D15,"Erection Cable Trays 10UBA Building to USA01-03",7112,"CCGTD1_IPS",TT_Task,"58492",-,-,-,100,TK_Complete,01/04/2019,01/04/2019,23/05/2019,14/06/2019,"KD_D02 FS,SUB-EIC-180 FS,SI-BZP4-27 FS,SI-BZP4B25 FS","KD_D02,SUB-EIC-180,SI-BZP4-27,SI-BZP4B25","CP1BZK7J25 FS","CP1BZK7J25",191,228,199,239,44,53,46,55,51,,"CCGT D1_Integrated Programme Schedule;M&E;Construction;M&E Construction;Electrical & I&C;General Electrical Erection;Cable Support System",4,1,0.0000001708,0.0036622584,0.0054933876,52,0.0,0.0001019055,0.0273972603,0.0030769231,0.0002578125,0.0093994778,0.0173745174,0.1165919283,0.0,0.0084681895
1.3.1.1.5.1.4-4,CP1BZP7F15,"Erection Cable Trays UMC to ST AND PUMPS (1d)",7112,"CCGTD1_IPS",TT_Task,"58492",-,-,-,100,TK_Complete,01/04/2019,01/04/2019,17/05/2019,15/06/2019,"SI-BZP4B25 FS,SUB-EIC-180 FS,SI-BZP4-27 FS,KD_D02 FS","SI-BZP4B25,SUB-EIC-180,SI-BZP4-27,KD_D02","10MA-1660 FS","10MA-1660",191,228,198,239,44,53,46,55,51,,"CCGT D1_Integrated Programme Schedule;M&E;Construction;M&E Construction;Electrical & I&C;General Electrical Erection;Cable Support System",4,1,0.0000065395,0.003051882,0.0054933876,46,0.0,0.0000995209,0.0273972603,0.0030769231,0.0098715278,0.0078328982,0.0173745174,0.1031390135,0.0,0.0074910907
1.3.1.1.5.1.4-5,CP-BZP7A15,"Erection Cable Trays Between UEY/UGY01 to UGD/USG/UGA/UGC/UEN",7112,"CCGTD1_IPS",TT_Task,"58492",-,-,-,100,TK_Complete,01/04/2019,01/04/2019,23/05/2019,05/06/2019,"KD_D02 FS,SUB-EIC-180 FS,SI-BZP4B25 FS,SUB-EIC-180 SS,SI-BZP4-27 FS","KD_D02,SUB-EIC-180,SI-BZP4B25,SUB-EIC-180,SI-BZP4-27","CP-BZK7C25 FS,10GHC40 FS,CP1BZK7D25 FS,00SGA-01-60 FS","CP-BZK7C25,10GHC40,CP1BZK7D25,00SGA-01-60",191,228,199,237,44,53,46,55,51,,"CCGT D1_Integrated Programme Schedule;M&E;Construction;M&E Construction;Electrical & I&C;General Electrical Erection;Cable Support System",4,4,0.0000161044,0.0067141404,0.0054933876,52,0.0,0.0001019055,0.0273972603,0.0123076923,0.0243098958,0.017232376,0.0173745174,0.1165919283,0.0,0.0084681895
1.3.1.1.5.1.4-6,CP1BZP7G15,"Erection Cable Trays UMC to GT (1e)",7112,"CCGTD1_IPS",TT_Task,"58492",-,-,-,100,TK_Complete,12/02/2019,15/01/2019,25/03/2019,21/05/2019,"SUB-EIC-180 FS,SI-BZP4-27 FS,SI-BZP4B25 FS","SUB-EIC-180,SI-BZP4-27,SI-BZP4B25","10MBA1180 FF","10MBA1180",184,217,190,235,43,50,44,54,47,,"CCGT D1_Integrated Programme Schedule;M&E;Construction;M&E Construction;Electrical & I&C;General Electrical Erection;Cable Support System",3,1,0.0000082394,0.0034587996,0.0052899288,41,0.0,0.0000947915,0.0205479452,0.0030769231,0.0124375,0.0088772846,0.0167310167,0.0919282511,0.0,0.0055532293
1.3.1.1.5.1.4-7,CP-BZP7B15,"Erection Cable Trays Between 10UBA Building to UEY/10UEN",7112,"CCGTD1_IPS",TT_Task,"58492",-,-,-,100,TK_Complete,21/01/2019,21/01/2019,27/02/2019,08/05/2019,"SUB-EIC-180 SS,SI-BZP4-27 FS,SUB-EIC-180 FS,SI-BZP4B25 FS","SUB-EIC-180,SI-BZP4-27,SUB-EIC-180,SI-BZP4B25","00GHD-140 FS,10QCC50 FS,00EG-02-40 FS,CP1BZK7D25 FS,00EG-01-50 FS,00STG50 FS,10QU50 FS,10QCD50 FS","00GHD-140,10QCC50,00EG-02-40,CP1BZK7D25,00EG-01-50,00STG50,10QU50,10QCD50",181,218,187,233,42,50,43,54,43,,"CCGT D1_Integrated Programme Schedule;M&E;Construction;M&E Construction;Electrical & I&C;General Electrical Erection;Cable Support System",3,8,0.0000222926,0.0075279756,0.0052899288,37,0.0,0.0000934693,0.0205479452,0.0246153846,0.0336510417,0.0193211488,0.0167310167,0.0829596413,0.0,0.0050114508
1.3.1.1.5.1.4-8,CP1BZP7C25,"Cable Support Installation",7112,"CCGTD1_IPS",TT_Task,"58492",-,-,-,100,TK_Complete,01/04/2019,01/04/2019,27/06/2019,19/06/2019,"","","","",191,228,204,239,44,53,47,55,51,,"CCGT D1_Integrated Programme Schedule;M&E;Construction;M&E Construction;Electrical & I&C;General Electrical Erection;Cable Support System",0,0,0.0,0.0,0.0,87,1.0,0.0000812387,0.0,0.0,0.0,0.0,0.0,0.1950672646,1.0,0.0
1.3.1.1.5.2,58490,"(10CJ) Automation System 10CJ",7112,"CCGTD1_IPS",WBS,"58468",,,,,NotStart,,,,,,,,,,,,,,,,,,,"CCGT D1_Integrated Programme Schedule;M&E;Construction;M&E Construction;Electrical & I&C"
1.3.1.1.5.3,58484,"ET 200 Stations",7112,"CCGTD1_IPS",WBS,"58468",,,,100,Complete,01/04/2019,01/04/2019,11/10/2019,26/08/2019,,,,,191,228,219,249,44,53,51,58,,,"CCGT D1_Integrated Programme Schedule;M&E;Construction;M&E Construction;Electrical & I&C"
1.3.1.1.5.3.1,58489,"(10CP-AA) ET200 Stations in Function Area 10 Auxiliary and Anciliary",7112,"CCGTD1_IPS",WBS,"58484",,,,100,Complete,30/09/2019,25/07/2019,11/10/2019,13/08/2019,,,,,217,244,219,247,50,57,51,57,,,"CCGT D1_Integrated Programme Schedule;M&E;Construction;M&E Construction;Electrical & I&C;ET 200 Stations"
1.3.1.1.5.3.1-1,10CP-AA70,"Test System",7112,"CCGTD1_IPS",TT_Task,"58489",-,-,-,100,TK_Complete,30/09/2019,10/08/2019,08/10/2019,13/08/2019,"10CP-AA50 FS","10CP-AA50","TOP1570 FS,TOP2430 FS","TOP1570,TOP2430",217,247,218,247,50,57,51,57,78,,"CCGT D1_Integrated Programme Schedule;M&E;Construction;M&E Construction;Electrical & I&C;ET 200 Stations;(10CP-AA) ET200 Stations in Function Area 10 Auxiliary and Anciliary",1,2,0.0000050513,0.0022380468,0.0069175992,8,1.0,0.0003758958,0.0068493151,0.0061538462,0.007625,0.0057441253,0.0218790219,0.0179372197,1.0,0.1207351747
1.3.1.1.5.3.1-2,10CP-AA10,"ET200 Cabinet Installation including Supports",7112,"CCGTD1_IPS",TT_Task,"58489",-,-,-,100,TK_Complete,30/09/2019,25/07/2019,10/10/2019,31/07/2019,"SI-CP-4-40 FS,SUB-EIC-180 FS,KD_D02 FS","SI-CP-4-40,SUB-EIC-180,KD_D02","10CP-AA20 FF","10CP-AA20",217,244,219,245,50,57,51,57,78,,"CCGT D1_Integrated Programme Schedule;M&E;Construction;M&E Construction;Electrical & I&C;ET 200 Stations;(10CP-AA) ET200 Stations in Function Area 10 Auxiliary and Anciliary",3,1,0.0000083222,0.0034587996,0.0052899288,10,1.0,0.0000834481,0.0205479452,0.0030769231,0.0125625,0.0088772846,0.0167310167,0.0224215247,1.0,0.0009053032
1.3.1.1.5.3.1-3,10CP-AA20,"Grounding Supports",7112,"CCGTD1_IPS",TT_Task,"58489",-,-,-,100,TK_Complete,30/09/2019,25/07/2019,10/10/2019,31/07/2019,"10CP-AA10 FF","10CP-AA10","10CP-AA60 SS,10CP-AA30 SS","10CP-AA60,10CP-AA30",217,244,219,245,50,57,51,57,78,,"CCGT D1_Integrated Programme Schedule;M&E;Construction;M&E Construction;Electrical & I&C;ET 200 Stations;(10CP-AA) ET200 Stations in Function Area 10 Auxiliary and Anciliary",1,2,0.0000079081,0.0032553408,0.0054933876,10,1.0,0.0001522758,0.0068493151,0.0061538462,0.0119375,0.0083550914,0.0173745174,0.0224215247,1.0,0.0291073138
1.3.1.1.5.3.1-4,10CP-AA30,"AC/DC Installation",7112,"CCGTD1_IPS",TT_Task,"58489",-,-,-,100,TK_Complete,03/10/2019,31/07/2019,09/10/2019,07/08/2019,"10CP-AA60 SS,10CP-AA20 SS","10CP-AA60,10CP-AA20","10CP-AA40 FF","10CP-AA40",218,245,219,246,50,57,51,57,78,,"CCGT D1_Integrated Programme Schedule;M&E;Construction;M&E Construction;Electrical & I&C;ET 200 Stations;(10CP-AA) ET200 Stations in Function Area 10 Auxiliary and Anciliary",2,1,0.0000071215,0.0028484232,0.006103764,6,1.0,0.000268457,0.0136986301,0.0030769231,0.01075,0.007310705,0.0193050193,0.0134529148,1.0,0.0767123197
1.3.1.1.5.3.1-5,10CP-AA50,"Communication Cable Installation",7112,"CCGTD1_IPS",TT_Task,"58489",-,-,-,100,TK_Complete,30/09/2019,01/08/2019,11/10/2019,09/08/2019,"10CP-AA40 SS","10CP-AA40","10CP-AA70 FS","10CP-AA70",217,245,219,247,50,57,51,57,78,,"CCGT D1_Integrated Programme Schedule;M&E;Construction;M&E Construction;Electrical & I&C;ET 200 Stations;(10CP-AA) ET200 Stations in Function Area 10 Auxiliary and Anciliary",1,1,0.0000059622,0.0024415056,0.0067141404,11,1.0,0.0003459338,0.0068493151,0.0030769231,0.009,0.0062663185,0.0212355212,0.0246636771,1.0,0.1084583051
1.3.1.1.5.3.1-6,10CP-AA60,"Primary and Secondary Containment Installation",7112,"CCGTD1_IPS",TT_Task,"58489",-,-,-,100,TK_Complete,30/09/2019,25/07/2019,11/10/2019,31/07/2019,"10CP-AA20 SS,SI-BZP4-27 FS","10CP-AA20,SI-BZP4-27","10CP-AA30 SS","10CP-AA30",217,244,219,245,50,57,51,57,78,,"CCGT D1_Integrated Programme Schedule;M&E;Construction;M&E Construction;Electrical & I&C;ET 200 Stations;(10CP-AA) ET200 Stations in Function Area 10 Auxiliary and Anciliary",2,1,0.0000002898,0.003051882,0.0059003052,11,1.0,0.0001661781,0.0136986301,0.0030769231,0.0004375,0.0078328982,0.0186615187,0.0246636771,1.0,0.0348037398
1.3.1.1.5.3.1-7,10CP-AA40,"Cable Installation",7112,"CCGTD1_IPS",TT_Task,"58489",-,-,-,100,TK_Complete,30/09/2019,01/08/2019,09/10/2019,09/08/2019,"SI-C-4C40 FS,10CP-AA30 FF","SI-C-4C40,10CP-AA30","10CP-AA50 SS","10CP-AA50",217,245,219,247,50,57,51,57,78,,"CCGT D1_Integrated Programme Schedule;M&E;Construction;M&E Construction;Electrical & I&C;ET 200 Stations;(10CP-AA) ET200 Stations in Function Area 10 Auxiliary and Anciliary",2,1,0.0000067902,0.0026449644,0.0065106816,9,1.0,0.0003107602,0.0136986301,0.0030769231,0.01025,0.0067885117,0.0205920206,0.0201793722,1.0,0.0940459955
1.3.1.1.5.3.2,58488,"(10CP-HR) ET200 Stations in Function Area 10HRSG",7112,"CCGTD1_IPS",WBS,"58484",,,,100,Complete,31/05/2019,20/05/2019,10/09/2019,26/08/2019,,,,,200,235,214,249,46,54,50,58,,,"CCGT D1_Integrated Programme Schedule;M&E;Construction;M&E Construction;Electrical & I&C;ET 200 Stations"
1.3.1.1.5.3.2-1,10CP-HR70,"Test System",7112,"CCGTD1_IPS",TT_Task,"58488",-,-,-,100,TK_Complete,31/08/2019,26/08/2019,03/09/2019,26/08/2019,"10CP-HR50 FS","10CP-HR50","TOP1580 FS,TOP2440 FS","TOP1580,TOP2440",213,249,213,249,49,58,49,58,71,,"CCGT D1_Integrated Programme Schedule;M&E;Construction;M&E Construction;Electrical & I&C;ET 200 Stations;(10CP-HR) ET200 Stations in Function Area 10HRSG",1,2,0.0000025256,0.0022380468,0.0016276704,3,1.0,0.0003279039,0.0068493151,0.0061538462,0.0038125,0.0057441253,0.0051480051,0.0067264574,1.0,0.1010705908
1.3.1.1.5.3.2-2,10CP-HR10,"ET200 Cabinet Installation including Supports",7112,"CCGTD1_IPS",TT_Task,"58488",-,-,-,100,TK_Complete,31/08/2019,06/08/2019,07/09/2019,13/08/2019,"SI-CP-4-40 FS,SUB-EIC-180 FS,10CP-HR20 FS","SI-CP-4-40,SUB-EIC-180,10CP-HR20","","",213,246,214,247,49,57,50,57,71,,"CCGT D1_Integrated Programme Schedule;M&E;Construction;M&E Construction;Electrical & I&C;ET 200 Stations;(10CP-HR) ET200 Stations in Function Area 10HRSG",3,0,0.0,0.0,0.0052899288,7,1.0,0.000107796,0.0205479452,0.0,0.0,0.0,0.0167310167,0.0156950673,1.0,0.0108818076
1.3.1.1.5.3.2-3,10CP-HR20,"Grounding Supports",7112,"CCGTD1_IPS",TT_Task,"58488",-,-,-,100,TK_Complete,31/05/2019,20/05/2019,11/06/2019,30/05/2019,"","","10CP-HR30 FS,10CP-HR60 FS,10CP-HR10 FS","10CP-HR30,10CP-HR60,10CP-HR10",200,235,201,236,46,54,47,55,60,,"CCGT D1_Integrated Programme Schedule;M&E;Construction;M&E Construction;Electrical & I&C;ET 200 Stations;(10CP-HR) ET200 Stations in Function Area 10HRSG",0,3,0.0,0.0034587996,0.0,11,1.0,0.0000812387,0.0,0.0092307692,0.0,0.0088772846,0.0,0.0246636771,1.0,0.0
1.3.1.1.5.3.2-4,10CP-HR30,"AC/DC Installation",7112,"CCGTD1_IPS",TT_Task,"58488",-,-,-,100,TK_Complete,04/09/2019,14/08/2019,10/09/2019,20/08/2019,"10CP-HR60 SS,10CP-HR20 FS","10CP-HR60,10CP-HR20","10CP-HR40 FF","10CP-HR40",214,247,214,248,49,57,50,58,75,,"CCGT D1_Integrated Programme Schedule;M&E;Construction;M&E Construction;Electrical & I&C;ET 200 Stations;(10CP-HR) ET200 Stations in Function Area 10HRSG",2,1,0.0000013663,0.0028484232,0.0008138352,6,1.0,0.0001913179,0.0136986301,0.0030769231,0.0020625,0.007310705,0.0025740026,0.0134529148,1.0,0.0451047325
1.3.1.1.5.3.2-5,10CP-HR40,"Cable Installation",7112,"CCGTD1_IPS",TT_Task,"58488",-,-,-,100,TK_Complete,31/08/2019,22/08/2019,06/09/2019,23/08/2019,"10CP-HR30 FF,SI-C-4C40 FS","10CP-HR30,SI-C-4C40","10CP-HR50 SS","10CP-HR50",213,248,214,249,49,58,50,58,71,,"CCGT D1_Integrated Programme Schedule;M&E;Construction;M&E Construction;Electrical & I&C;ET 200 Stations;(10CP-HR) ET200 Stations in Function Area 10HRSG",2,1,0.0000021116,0.0026449644,0.0012207528,6,1.0,0.0002447091,0.0136986301,0.0030769231,0.0031875,0.0067885117,0.0038610039,0.0134529148,1.0,0.0669816866
1.3.1.1.5.3.2-6,10CP-HR50,"Communication Cable Installation",7112,"CCGTD1_IPS",TT_Task,"58488",-,-,-,100,TK_Complete,31/08/2019,22/08/2019,06/09/2019,24/08/2019,"10CP-HR40 SS","10CP-HR40","10CP-HR70 FS","10CP-HR70",213,248,214,249,49,58,50,58,71,,"CCGT D1_Integrated Programme Schedule;M&E;Construction;M&E Construction;Electrical & I&C;ET 200 Stations;(10CP-HR) ET200 Stations in Function Area 10HRSG",1,1,0.00000236,0.0024415056,0.0014242116,6,1.0,0.0002896032,0.0068493151,0.0030769231,0.0035625,0.0062663185,0.0045045045,0.0134529148,1.0,0.0853769711
1.3.1.1.5.3.2-7,10CP-HR60,"Primary and Secondary Containment Installation",7112,"CCGTD1_IPS",TT_Task,"58488",-,-,-,100,TK_Complete,31/08/2019,06/08/2019,06/09/2019,13/08/2019,"SI-BZP4-27 FS,10CP-HR20 FS","SI-BZP4-27,10CP-HR20","10CP-HR30 SS","10CP-HR30",213,246,214,247,49,57,50,57,71,,"CCGT D1_Integrated Programme Schedule;M&E;Construction;M&E Construction;Electrical & I&C;ET 200 Stations;(10CP-HR) ET200 Stations in Function Area 10HRSG",2,1,0.0000002898,0.003051882,0.0006103764,6,0.8,0.0001036647,0.0136986301,0.0030769231,0.0004375,0.0078328982,0.0019305019,0.0134529148,0.8,0.0091889962
1.3.1.1.5.3.3,58487,"(10CP-WS) ET200 Stations in Function Area 10 Water / Steam Cycle",7112,"CCGTD1_IPS",WBS,"58484",,,,100,Complete,17/04/2019,17/04/2019,16/08/2019,23/08/2019,,,,,194,230,211,249,45,53,49,58,,,"CCGT D1_Integrated Programme Schedule;M&E;Construction;M&E Construction;Electrical & I&C;ET 200 Stations"
1.3.1.1.5.3.3-1,10CP-WS70,"Test System",7112,"CCGTD1_IPS",TT_Task,"58487",-,-,-,100,TK_Complete,05/08/2019,06/08/2019,16/08/2019,17/08/2019,"10CP-WS50 FS","10CP-WS50","TOP1590 FS,TOP2450 FS,TOP2460 FS,TOP2520 FS,TOP2530 FS,TOP2540 FS","TOP1590,TOP2450,TOP2460,TOP2520,TOP2530,TOP2540",209,246,211,248,48,57,49,57,69,,"CCGT D1_Integrated Programme Schedule;M&E;Construction;M&E Construction;Electrical & I&C;ET 200 Stations;(10CP-WS) ET200 Stations in Function Area 10 Water / Steam Cycle",1,6,0.000018549,0.0042726348,0.0069175992,11,1.0,0.000380779,0.0068493151,0.0184615385,0.028,0.0109660574,0.0218790219,0.0246636771,1.0,0.1227360739
1.3.1.1.5.3.3-2,10CP-WS10,"ET200 Cabinet Installation including Supports",7112,"CCGTD1_IPS",TT_Task,"58487",-,-,-,100,TK_Complete,17/04/2019,17/04/2019,27/04/2019,15/05/2019,"SI-CP-4-40 FS,SUB-EIC-180 FS,KD_H01 FS","SI-CP-4-40,SUB-EIC-180,KD_H01","10CP-WS20 FS","10CP-WS20",194,230,195,234,45,53,45,54,54,,"CCGT D1_Integrated Programme Schedule;M&E;Construction;M&E Construction;Electrical & I&C;ET 200 Stations;(10CP-WS) ET200 Stations in Function Area 10 Water / Steam Cycle",3,1,0.0000186732,0.0054933876,0.0052899288,10,0.0,0.000090059,0.0205479452,0.0030769231,0.0281875,0.0140992167,0.0167310167,0.0224215247,0.0,0.003614089
1.3.1.1.5.3.3-3,10CP-WS20,"Grounding Supports",7112,"CCGTD1_IPS",TT_Task,"58487",-,-,-,100,TK_Complete,26/04/2019,26/04/2019,02/05/2019,09/08/2019,"10CP-WS10 FS","10CP-WS10","10CP-WS30 FS,10CP-WS60 FS","10CP-WS30,10CP-WS60",195,232,196,247,45,54,45,57,55,,"CCGT D1_Integrated Programme Schedule;M&E;Construction;M&E Construction;Electrical & I&C;ET 200 Stations;(10CP-WS) ET200 Stations in Function Area 10 Water / Steam Cycle",1,2,0.0000186732,0.0052899288,0.0054933876,6,0.0,0.0001579012,0.0068493151,0.0061538462,0.0281875,0.0135770235,0.0173745174,0.0134529148,0.0,0.0314123215
1.3.1.1.5.3.3-4,10CP-WS30,"AC/DC Installation",7112,"CCGTD1_IPS",TT_Task,"58487",-,-,-,100,TK_Complete,11/05/2019,11/05/2019,22/05/2019,23/08/2019,"10CP-WS60 FS,10CP-WS20 FS","10CP-WS60,10CP-WS20","10CP-WS40 FS","10CP-WS40",197,234,199,249,46,54,46,58,58,,"CCGT D1_Integrated Programme Schedule;M&E;Construction;M&E Construction;Electrical & I&C;ET 200 Stations;(10CP-WS) ET200 Stations in Function Area 10 Water / Steam Cycle",2,1,0.0000188388,0.0048830112,0.006103764,11,0.0,0.0002761206,0.0136986301,0.0030769231,0.0284375,0.0125326371,0.0193050193,0.0246636771,0.0,0.0798524668
1.3.1.1.5.3.3-5,10CP-WS40,"Cable Installation",7112,"CCGTD1_IPS",TT_Task,"58487",-,-,-,100,TK_Complete,23/05/2019,23/05/2019,03/06/2019,03/08/2019,"10CP-WS30 FS,SI-C-4C40 FS","10CP-WS30,SI-C-4C40","10CP-WS50 FS","10CP-WS50",199,235,200,246,46,55,46,57,59,,"CCGT D1_Integrated Programme Schedule;M&E;Construction;M&E Construction;Electrical & I&C;ET 200 Stations;(10CP-WS) ET200 Stations in Function Area 10 Water / Steam Cycle",2,1,0.0000194598,0.0046795524,0.0065106816,11,0.0,0.0003174834,0.0136986301,0.0030769231,0.029375,0.0120104439,0.0205920206,0.0246636771,0.0,0.0968008211
1.3.1.1.5.3.3-6,10CP-WS50,"Communication Cable Installation",7112,"CCGTD1_IPS",TT_Task,"58487",-,-,-,100,TK_Complete,23/05/2019,23/05/2019,03/06/2019,03/08/2019,"10CP-WS40 FS","10CP-WS40","10CP-WS70 FS","10CP-WS70",199,235,200,246,46,55,46,57,59,,"CCGT D1_Integrated Programme Schedule;M&E;Construction;M&E Construction;Electrical & I&C;ET 200 Stations;(10CP-WS) ET200 Stations in Function Area 10 Water / Steam Cycle",1,1,0.0000190458,0.0044760936,0.0067141404,11,0.0,0.0003516526,0.0068493151,0.0030769231,0.02875,0.0114882507,0.0212355212,0.0246636771,0.0,0.1108015794
1.3.1.1.5.3.3-7,10CP-WS60,"Primary and Secondary Containment Installation",7112,"CCGTD1_IPS",TT_Task,"58487",-,-,-,100,TK_Complete,06/05/2019,06/05/2019,16/05/2019,10/07/2019,"SI-BZP4-27 FS,10CP-WS20 FS","SI-BZP4-27,10CP-WS20","10CP-WS30 FS","10CP-WS30",196,233,198,242,45,54,46,56,57,,"CCGT D1_Integrated Programme Schedule;M&E;Construction;M&E Construction;Electrical & I&C;ET 200 Stations;(10CP-WS) ET200 Stations in Function Area 10 Water / Steam Cycle",2,1,0.000000414,0.00508647,0.0059003052,10,0.0,0.0001462166,0.0136986301,0.0030769231,0.000625,0.0130548303,0.0186615187,0.0224215247,0.0,0.0266245813
1.3.1.1.5.3.4,58486,"(10CP-GT) ET200 Stations in Function Area 10GT",7112,"CCGTD1_IPS",WBS,"58484",,,,100,Complete,01/04/2019,05/04/2019,15/08/2019,13/08/2019,,,,,191,229,211,247,44,53,49,57,,,"CCGT D1_Integrated Programme Schedule;M&E;Construction;M&E Construction;Electrical & I&C;ET 200 Stations"
1.3.1.1.5.3.4-1,10CP-GT70,"Test System",7112,"CCGTD1_IPS",TT_Task,"58486",-,-,-,100,TK_Complete,05/08/2019,09/08/2019,15/08/2019,13/08/2019,"10CP-GT50 FS","10CP-GT50","TOP1640 FS,TOP2390 FS","TOP1640,TOP2390",209,247,211,247,48,57,49,57,69,,"CCGT D1_Integrated Programme Schedule;M&E;Construction;M&E Construction;Electrical & I&C;ET 200 Stations;(10CP-GT) ET200 Stations in Function Area 10GT",1,2,0.0000134977,0.0036622584,0.0065106816,10,1.0,0.000382865,0.0068493151,0.0061538462,0.020375,0.0093994778,0.0205920206,0.0224215247,1.0,0.1235908078
1.3.1.1.5.3.4-2,10CP-GT20,"Grounding Supports",7112,"CCGTD1_IPS",TT_Task,"58486",-,-,-,100,TK_Complete,13/04/2019,13/04/2019,24/04/2019,10/08/2019,"10CP-GT10 FS","10CP-GT10","10CP-GT30 FS","10CP-GT30",193,230,195,247,45,53,45,57,54,,"CCGT D1_Integrated Programme Schedule;M&E;Construction;M&E Construction;Electrical & I&C;ET 200 Stations;(10CP-GT) ET200 Stations in Function Area 10GT",1,1,0.0000067695,0.0044760936,0.0052899288,11,0.0,0.0001164727,0.0068493151,0.0030769231,0.01021875,0.0114882507,0.0167310167,0.0246636771,0.0,0.0144370564
1.3.1.1.5.3.4-3,10CP-GT30,"AC/DC Installation",7112,"CCGTD1_IPS",TT_Task,"58486",-,-,-,100,TK_Complete,16/05/2019,16/05/2019,27/05/2019,07/08/2019,"10CP-GT20 FS,10CP-GT60 FS","10CP-GT20,10CP-GT60","10CP-GT40 SS","10CP-GT40",198,234,199,246,46,54,46,57,59,,"CCGT D1_Integrated Programme Schedule;M&E;Construction;M&E Construction;Electrical & I&C;ET 200 Stations;(10CP-GT) ET200 Stations in Function Area 10GT",2,1,0.0000138703,0.0042726348,0.0056968464,11,0.0,0.0002795179,0.0136986301,0.0030769231,0.0209375,0.0109660574,0.018018018,0.0246636771,0.0,0.081244515
1.3.1.1.5.3.4-4,10CP-GT40,"Cable Installation",7112,"CCGTD1_IPS",TT_Task,"58486",-,-,-,100,TK_Complete,16/05/2019,16/05/2019,27/05/2019,08/08/2019,"10CP-GT30 SS,SI-C-4C40 FS","10CP-GT30,SI-C-4C40","10CP-GT50 FS","10CP-GT50",198,234,199,246,46,54,46,57,59,,"CCGT D1_Integrated Programme Schedule;M&E;Construction;M&E Construction;Electrical & I&C;ET 200 Stations;(10CP-GT) ET200 Stations in Function Area 10GT",2,1,0.0000144914,0.004069176,0.006103764,11,0.0,0.0003203231,0.0136986301,0.0030769231,0.021875,0.0104438642,0.0193050193,0.0246636771,0.0,0.097964364
1.3.1.1.5.3.4-5,10CP-GT50,"Communication Cable Installation",7112,"CCGTD1_IPS",TT_Task,"58486",-,-,-,100,TK_Complete,28/05/2019,28/05/2019,07/06/2019,08/08/2019,"10CP-GT40 FS","10CP-GT40","10CP-GT70 FS","10CP-GT70",199,236,201,246,46,55,46,57,60,,"CCGT D1_Integrated Programme Schedule;M&E;Construction;M&E Construction;Electrical & I&C;ET 200 Stations;(10CP-GT) ET200 Stations in Function Area 10GT",1,1,0.0000140359,0.0038657172,0.0063072228,10,0.0,0.0003540458,0.0068493151,0.0030769231,0.0211875,0.009921671,0.0199485199,0.0224215247,0.0,0.1117821891
1.3.1.1.5.3.4-6,10CP-GT60,"Primary and Secondary Containment Installation",7112,"CCGTD1_IPS",TT_Task,"58486",-,-,-,100,TK_Complete,13/04/2019,13/04/2019,24/04/2019,10/07/2019,"10CP-GT10 FS","10CP-GT10","10CP-GT30 FS,SC1200 FS","10CP-GT30,SC1200",193,230,195,242,45,53,45,56,54,,"CCGT D1_Integrated Programme Schedule;M&E;Construction;M&E Construction;Electrical & I&C;ET 200 Stations;(10CP-GT) ET200 Stations in Function Area 10GT",1,2,0.0000071836,0.0046795524,0.0052899288,11,0.0,0.0001164727,0.0068493151,0.0061538462,0.01084375,0.0120104439,0.0167310167,0.0246636771,0.0,0.0144370564
1.3.1.1.5.3.4-7,10CP-GT10,"ET200 Cabinet Installation including Supports",7112,"CCGTD1_IPS",TT_Task,"58486",-,-,-,100,TK_Complete,01/04/2019,05/04/2019,11/04/2019,15/05/2019,"SI-CP-4-40 FS,SUB-EIC-180 FS","SI-CP-4-40,SUB-EIC-180","10CP-GT20 FS,10CP-GT60 FS","10CP-GT20,10CP-GT60",191,229,193,234,44,53,45,54,51,,"CCGT D1_Integrated Programme Schedule;M&E;Construction;M&E Construction;Electrical & I&C;ET 200 Stations;(10CP-GT) ET200 Stations in Function Area 10GT",2,2,0.000015071,0.00508647,0.00508647,10,0.0,0.0000827793,0.0136986301,0.0061538462,0.02275,0.0130548303,0.0160875161,0.0224215247,0.0,0.0006312514
1.3.1.1.5.3.5,58485,"(10CP-ST) ET200 Stations in Function Area 10ST",7112,"CCGTD1_IPS",WBS,"58484",,,,100,Complete,01/04/2019,01/04/2019,16/08/2019,14/08/2019,,,,,191,228,211,247,44,53,49,57,,,"CCGT D1_Integrated Programme Schedule;M&E;Construction;M&E Construction;Electrical & I&C;ET 200 Stations"
1.3.1.1.5.3.5-1,10CP-ST-70,"Test System",7112,"CCGTD1_IPS",TT_Task,"58485",-,-,-,100,TK_Complete,02/08/2019,12/08/2019,16/08/2019,14/08/2019,"10CP-ST-50 FS,10CP-ST-30 FS","10CP-ST-50,10CP-ST-30","TOP1620 FS,TOP2450 FS,TOP2340 FS","TOP1620,TOP2450,TOP2340",209,247,211,247,48,57,49,57,68,,"CCGT D1_Integrated Programme Schedule;M&E;Construction;M&E Construction;Electrical & I&C;ET 200 Stations;(10CP-ST) ET200 Stations in Function Area 10ST",2,3,0.0000058886,0.0044760936,0.0016276704,14,1.0,0.0003561622,0.0136986301,0.0092307692,0.0088888889,0.0114882507,0.0051480051,0.0313901345,1.0,0.1126493669
1.3.1.1.5.3.5-2,10CP-ST-10,"ET200 Cabinet Installation including Supports",7112,"CCGTD1_IPS",TT_Task,"58485",-,-,-,100,TK_Complete,13/04/2019,13/04/2019,25/04/2019,10/05/2019,"KD_C17 FS,10CP-ST-20 FS","KD_C17,10CP-ST-20","","",193,230,195,234,45,53,45,54,54,,"CCGT D1_Integrated Programme Schedule;M&E;Construction;M&E Construction;Electrical & I&C;ET 200 Stations;(10CP-ST) ET200 Stations in Function Area 10ST",2,0,0.0,0.0,0.0004069176,12,0.0,0.0001005037,0.0136986301,0.0,0.0,0.0,0.0012870013,0.0269058296,0.0,0.0078937888
1.3.1.1.5.3.5-3,10CP-ST-20,"Grounding Supports",7112,"CCGTD1_IPS",TT_Task,"58485",-,-,-,100,TK_Complete,01/04/2019,01/04/2019,11/04/2019,10/08/2019,"","","10CP-ST-30 FS,10CP-ST-60 FS,10CP-ST-10 FS","10CP-ST-30,10CP-ST-60,10CP-ST-10",191,228,193,247,44,53,45,57,50,,"CCGT D1_Integrated Programme Schedule;M&E;Construction;M&E Construction;Electrical & I&C;ET 200 Stations;(10CP-ST) ET200 Stations in Function Area 10ST",0,3,0.0,0.0056968464,0.0,10,0.0,0.0000812387,0.0,0.0092307692,0.0,0.0146214099,0.0,0.0224215247,0.0,0.0
1.3.1.1.5.3.5-4,10CP-ST-30,"AC/DC Installation",7112,"CCGTD1_IPS",TT_Task,"58485",-,-,-,100,TK_Complete,07/06/2019,15/06/2019,24/06/2019,10/08/2019,"10CP-ST-20 FS,10CP-ST-60 SS","10CP-ST-20,10CP-ST-60","10CP-ST-40 FS,10CP-ST-40 FF,10CP-ST-70 FS","10CP-ST-40,10CP-ST-40,10CP-ST-70",201,239,203,247,46,55,47,57,62,,"CCGT D1_Integrated Programme Schedule;M&E;Construction;M&E Construction;Electrical & I&C;ET 200 Stations;(10CP-ST) ET200 Stations in Function Area 10ST",2,2,0.0000027522,0.00508647,0.0008138352,17,0.0,0.000157424,0.0136986301,0.0061538462,0.0041545139,0.0130548303,0.0025740026,0.0381165919,0.0,0.0312167846
1.3.1.1.5.3.5-5,10CP-ST-40,"Cable Installation",7112,"CCGTD1_IPS",TT_Task,"58485",-,-,-,100,TK_Complete,28/05/2019,28/05/2019,11/06/2019,07/08/2019,"10CP-ST-30 FS,SI-C-4C40 FS,10CP-ST-60 FS,10CP-ST-30 FF","10CP-ST-30,SI-C-4C40,10CP-ST-60,10CP-ST-30","10CP-ST-50 SS","10CP-ST-50",199,236,201,246,46,55,47,57,60,,"CCGT D1_Integrated Programme Schedule;M&E;Construction;M&E Construction;Electrical & I&C;ET 200 Stations;(10CP-ST) ET200 Stations in Function Area 10ST",3,1,0.0000009005,0.0048830112,0.0012207528,14,0.0,0.000191387,0.0205479452,0.0030769231,0.001359375,0.0125326371,0.0038610039,0.0313901345,0.0,0.0451330406
1.3.1.1.5.3.5-6,10CP-ST-50,"Communication Cable Installation",7112,"CCGTD1_IPS",TT_Task,"58485",-,-,-,100,TK_Complete,28/05/2019,28/05/2019,07/06/2019,07/08/2019,"10CP-ST-40 SS","10CP-ST-40","10CP-ST-70 FS","10CP-ST-70",199,236,201,246,46,55,46,57,60,,"CCGT D1_Integrated Programme Schedule;M&E;Construction;M&E Construction;Electrical & I&C;ET 200 Stations;(10CP-ST) ET200 Stations in Function Area 10ST",1,1,0.0000016044,0.0046795524,0.0014242116,10,0.0,0.0002441714,0.0068493151,0.0030769231,0.002421875,0.0120104439,0.0045045045,0.0224215247,0.0,0.0667613442
1.3.1.1.5.3.5-7,10CP-ST-60,"Primary and Secondary Containment Installation",7112,"CCGTD1_IPS",TT_Task,"58485",-,-,-,100,TK_Complete,10/05/2019,10/05/2019,27/05/2019,10/07/2019,"10CP-ST-20 FS,SI-BZP4-27 FS","10CP-ST-20,SI-BZP4-27","10CP-ST-40 FS,10CP-ST-30 SS","10CP-ST-40,10CP-ST-30",197,234,199,242,46,54,46,56,58,,"CCGT D1_Integrated Programme Schedule;M&E;Construction;M&E Construction;Electrical & I&C;ET 200 Stations;(10CP-ST) ET200 Stations in Function Area 10ST",2,2,0.0000010132,0.0052899288,0.0006103764,17,0.0,0.0001084596,0.0136986301,0.0061538462,0.0015295139,0.0135770235,0.0019305019,0.0381165919,0.0,0.0111537233
1.3.1.1.5.4,58483,"(00XKA) Emergency Diesel Generator Set",7112,"CCGTD1_IPS",WBS,"58468",,,,100,Complete,26/06/2019,01/06/2019,18/10/2019,30/11/2019,,,,,204,237,220,263,47,55,51,61,,,"CCGT D1_Integrated Programme Schedule;M&E;Construction;M&E Construction;Electrical & I&C"
1.3.1.1.5.4-1,00XKA10,"Installation of Emergency Diesel Generator Set ( XKA)",7112,"CCGTD1_IPS",TT_Task,"58483",-,-,-,100,TK_Complete,16/07/2019,22/07/2019,01/08/2019,02/10/2019,"SI0XKA4-25 FS,KD_D09 FS,SUB-EIC-180 FS","SI0XKA4-25,KD_D09,SUB-EIC-180","00XKA30 FS","00XKA30",206,244,209,254,48,57,48,59,66,,"CCGT D1_Integrated Programme Schedule;M&E;Construction;M&E Construction;Electrical & I&C;(00XKA) Emergency Diesel Generator Set",3,1,0.000005869,0.0034587996,0.0052899288,16,0.0,0.0001671974,0.0205479452,0.0030769231,0.008859375,0.0088772846,0.0167310167,0.0358744395,0.0,0.0352213944
1.3.1.1.5.4-2,00XKA30,"Install Pipework",7112,"CCGTD1_IPS",TT_Task,"58483",-,-,-,100,TK_Complete,26/06/2019,01/06/2019,17/07/2019,19/10/2019,"00XKA10 FS","00XKA10","00XKA40 FS","00XKA40",204,237,207,257,47,55,48,60,64,,"CCGT D1_Integrated Programme Schedule;M&E;Construction;M&E Construction;Electrical & I&C;(00XKA) Emergency Diesel Generator Set",1,1,0.000005455,0.0032553408,0.0054933876,21,0.0,0.0002235412,0.0068493151,0.0030769231,0.008234375,0.0083550914,0.0173745174,0.0470852018,0.0,0.0583081665
1.3.1.1.5.4-3,00XKA40,"Cable Raceway",7112,"CCGTD1_IPS",TT_Task,"58483",-,-,-,100,TK_Complete,12/07/2019,04/06/2019,29/07/2019,22/06/2019,"SI-BZP4-27 FS,00XKA30 FS","SI-BZP4-27,00XKA30","CP-BZK7G25 FS,00XKA50 FS","CP-BZK7G25,00XKA50",206,237,208,240,48,55,48,56,66,,"CCGT D1_Integrated Programme Schedule;M&E;Construction;M&E Construction;Electrical & I&C;(00XKA) Emergency Diesel Generator Set",2,2,0.0000053308,0.003051882,0.0059003052,17,1.0,0.0002732216,0.0136986301,0.0061538462,0.008046875,0.0078328982,0.0186615187,0.0381165919,1.0,0.0786646223
1.3.1.1.5.4-4,00XKA50,"Pull Cables & Terminate",7112,"CCGTD1_IPS",TT_Task,"58483",-,-,-,100,TK_Complete,18/07/2019,06/06/2019,03/08/2019,30/11/2019,"00XKA40 FS","00XKA40","00XKA60 FS","00XKA60",207,237,209,263,48,55,48,61,66,,"CCGT D1_Integrated Programme Schedule;M&E;Construction;M&E Construction;Electrical & I&C;(00XKA) Emergency Diesel Generator Set",1,1,0.0000029811,0.0026449644,0.006103764,16,0.0,0.0001556985,0.0068493151,0.0030769231,0.0045,0.0067885117,0.0193050193,0.0358744395,0.0,0.0305097747
1.3.1.1.5.4-5,00XKA60,"Precommissioning",7112,"CCGTD1_IPS",TT_Task,"58483",-,-,-,100,TK_Complete,05/10/2019,15/10/2019,18/10/2019,26/11/2019,"00XKA50 FS","00XKA50","TOP1730 FS,SC1200 FS","TOP1730,SC1200",218,256,220,262,50,59,51,61,79,,"CCGT D1_Integrated Programme Schedule;M&E;Construction;M&E Construction;Electrical & I&C;(00XKA) Emergency Diesel Generator Set",1,2,0.0000022358,0.0024415056,0.0063072228,13,0.0,0.0002138417,0.0068493151,0.0061538462,0.003375,0.0062663185,0.0199485199,0.0291479821,0.0,0.054333834
1.3.1.1.5.5,58475,"Lighting & Small Power (BZL)",7112,"CCGTD1_IPS",WBS,"58468",,,,100,Complete,01/04/2019,01/04/2019,28/03/2020,,,,,,191,228,243,,44,53,56,,,,"CCGT D1_Integrated Programme Schedule;M&E;Construction;M&E Construction;Electrical & I&C"
1.3.1.1.5.5-1,A2330,"Lighting and Small Power Installation & Commissioning FW Area",7112,"CCGTD1_IPS",TT_Task,"58475",-,-,-,100,TK_Complete,31/05/2019,31/05/2019,12/06/2019,10/10/2019,"EDS.1000 FS,CP-BZL7-60 FS","EDS.1000,CP-BZL7-60","SC1190 FS","SC1190",200,237,202,255,46,55,47,59,60,,"CCGT D1_Integrated Programme Schedule;M&E;Construction;M&E Construction;Electrical & I&C;Lighting & Small Power (BZL)",2,1,0.0000002898,0.0014242116,0.0054933876,12,0.0,0.0001587784,0.0136986301,0.0030769231,0.0004375,0.0036553525,0.0173745174,0.0269058296,0.0,0.0317717399
1.3.1.1.5.5-2,A3320,"Installation Lighting and Small Power",7112,"CCGTD1_IPS",TT_Task,"58475",-,-,-,100,TK_Complete,01/04/2019,01/04/2019,04/05/2019,28/09/2019,"SUB-EIC-180 FS","SUB-EIC-180","SC1190 FS,CP-BZL7-60 FS","SC1190,CP-BZL7-60",191,228,196,254,44,53,45,59,50,,"CCGT D1_Integrated Programme Schedule;M&E;Construction;M&E Construction;Electrical & I&C;Lighting & Small Power (BZL)",1,2,0.000001946,0.0018311292,0.0048830112,33,0.0,0.000082817,0.0068493151,0.0061538462,0.0029375,0.0046997389,0.0154440154,0.0739910314,0.0,0.000646694
1.3.1.1.5.5-3,CP1BZL7A15,"Lighting and Small Power Installation (10UBA)",7112,"CCGTD1_IPS",TT_Task,"58475",-,-,-,100,TK_Complete,22/06/2019,22/05/2019,10/07/2019,24/09/2019,"SI-BZP4B25 FS,KD_E07 FS","SI-BZP4B25,KD_E07","SC1190 FS","SC1190",203,235,206,253,47,55,48,59,64,,"CCGT D1_Integrated Programme Schedule;M&E;Construction;M&E Construction;Electrical & I&C;Lighting & Small Power (BZL)",2,1,0.0000005797,0.0014242116,0.0006103764,18,0.0,0.0000957818,0.0136986301,0.0030769231,0.000875,0.0036553525,0.0019305019,0.0403587444,0.0,0.005958993
1.3.1.1.5.5-4,CP-BZL7-60,"Remaining Lighting and Small Power Finished",7112,"CCGTD1_IPS",TT_Task,"58475",-,-,-,100,TK_Complete,30/09/2019,11/10/2019,30/09/2019,12/10/2019,"A3320 FS","A3320","SC1190 FS,A2330 FS","SC1190,A2330",217,256,217,256,50,59,50,59,78,,"CCGT D1_Integrated Programme Schedule;M&E;Construction;M&E Construction;Electrical & I&C;Lighting & Small Power (BZL)",1,2,0.0000009937,0.0016276704,0.00508647,0,1.0,0.0000812387,0.0068493151,0.0061538462,0.0015,0.0041775457,0.0160875161,0.0,1.0,0.0
1.3.1.1.5.5.1,58482,"(10LBH) Start-up and Shutdown Steam System incl Drains System",7112,"CCGTD1_IPS",WBS,"58475",,,,,NotStart,,,,,,,,,,,,,,,,,,,"CCGT D1_Integrated Programme Schedule;M&E;Construction;M&E Construction;Electrical & I&C;Lighting & Small Power (BZL)"
1.3.1.1.5.5.2,58481,"(00BZL-02) L&SP in UCA",7112,"CCGTD1_IPS",WBS,"58475",,,,100,Complete,30/09/2019,02/10/2019,15/10/2019,12/10/2019,,,,,217,254,219,256,50,59,51,59,,,"CCGT D1_Integrated Programme Schedule;M&E;Construction;M&E Construction;Electrical & I&C;Lighting & Small Power (BZL)"
1.3.1.1.5.5.2-1,00BZL-02-10,"Install Accessories/Supports",7112,"CCGTD1_IPS",TT_Task,"58481",-,-,-,100,TK_Complete,30/09/2019,02/10/2019,12/10/2019,12/10/2019,"EDS.1000 FS,SUB-EIC-180 FS,KD_D02 FS,KD_E07 FS","EDS.1000,SUB-EIC-180,KD_D02,KD_E07","00BZL-02-30 SS","00BZL-02-30",217,254,219,256,50,59,51,59,78,,"CCGT D1_Integrated Programme Schedule;M&E;Construction;M&E Construction;Electrical & I&C;Lighting & Small Power (BZL);(00BZL-02) L&SP in UCA",4,1,0.0000024014,0.002034588,0.0054933876,12,1.0,0.0000984743,0.0273972603,0.0030769231,0.003625,0.0052219321,0.0173745174,0.0269058296,1.0,0.0070622612
1.3.1.1.5.5.2-2,00BZL-02-40,"Install Cabling",7112,"CCGTD1_IPS",TT_Task,"58481",-,-,-,100,TK_Complete,05/10/2019,02/10/2019,15/10/2019,12/10/2019,"00BZL-02-30 SS","00BZL-02-30","SC1240 FS,SC1230 FS","SC1240,SC1230",218,254,219,256,50,59,51,59,79,,"CCGT D1_Integrated Programme Schedule;M&E;Construction;M&E Construction;Electrical & I&C;Lighting & Small Power (BZL);(00BZL-02) L&SP in UCA",1,2,0.0000012421,0.0016276704,0.006103764,10,1.0,0.0002224879,0.0068493151,0.0061538462,0.001875,0.0041775457,0.0193050193,0.0224215247,1.0,0.057876593
1.3.1.1.5.5.2-3,00BZL-02-30,"Install Secondary Containment",7112,"CCGTD1_IPS",TT_Task,"58481",-,-,-,100,TK_Complete,03/10/2019,02/10/2019,12/10/2019,12/10/2019,"SI-BZP4-27 FS,00BZL-02-10 SS","SI-BZP4-27,00BZL-02-10","00BZL-02-40 SS","00BZL-02-40",218,254,219,256,50,59,51,59,78,,"CCGT D1_Integrated Programme Schedule;M&E;Construction;M&E Construction;Electrical & I&C;Lighting & Small Power (BZL);(00BZL-02) L&SP in UCA",2,1,0.0000021116,0.0018311292,0.0059003052,9,1.0,0.0001659425,0.0136986301,0.0030769231,0.0031875,0.0046997389,0.0186615187,0.0201793722,1.0,0.0347072259
1.3.1.1.5.5.3,58480,"(00BZL-03) L&SP incl. BMZ 00 IN USG Area",7112,"CCGTD1_IPS",WBS,"58475",,,,100,Complete,30/09/2019,04/10/2019,26/11/2019,12/10/2019,,,,,217,255,225,256,50,59,52,59,,,"CCGT D1_Integrated Programme Schedule;M&E;Construction;M&E Construction;Electrical & I&C;Lighting & Small Power (BZL)"
1.3.1.1.5.5.3-1,00BZL-03-10,"Install Accessories/Supports",7112,"CCGTD1_IPS",TT_Task,"58480",-,-,-,100,TK_Complete,30/09/2019,04/10/2019,14/10/2019,12/10/2019,"SUB-EIC-180 FS,EDS.1000 FS","SUB-EIC-180,EDS.1000","00BZL-03-20 FS","00BZL-03-20",217,255,219,256,50,59,51,59,78,,"CCGT D1_Integrated Programme Schedule;M&E;Construction;M&E Construction;Electrical & I&C;Lighting & Small Power (BZL);(00BZL-03) L&SP incl. BMZ 00 IN USG Area",2,1,0.0000029811,0.0022380468,0.00508647,14,1.0,0.0000916881,0.0136986301,0.0030769231,0.0045,0.0057441253,0.0160875161,0.0313901345,1.0,0.0042816015
1.3.1.1.5.5.3-2,00BZL-03-20,"Install Primary Containment",7112,"CCGTD1_IPS",TT_Task,"58480",-,-,-,100,TK_Complete,09/10/2019,04/10/2019,25/10/2019,12/10/2019,"00BZL-03-10 FS,SI-BZP4-27 FS","00BZL-03-10,SI-BZP4-27","00BZL-03-30 FS","00BZL-03-30",219,255,221,256,51,59,51,59,79,,"CCGT D1_Integrated Programme Schedule;M&E;Construction;M&E Construction;Electrical & I&C;Lighting & Small Power (BZL);(00BZL-03) L&SP incl. BMZ 00 IN USG Area",2,1,0.000002567,0.002034588,0.0054933876,16,1.0,0.0001608526,0.0136986301,0.0030769231,0.003875,0.0052219321,0.0173745174,0.0358744395,1.0,0.032621622
1.3.1.1.5.5.3-3,00BZL-03-30,"Install Secondary Containment",7112,"CCGTD1_IPS",TT_Task,"58480",-,-,-,100,TK_Complete,21/10/2019,04/10/2019,06/11/2019,12/10/2019,"00BZL-03-20 FS","00BZL-03-20","00BZL-03-40 FS","00BZL-03-40",220,255,223,256,51,59,52,59,80,,"CCGT D1_Integrated Programme Schedule;M&E;Construction;M&E Construction;Electrical & I&C;Lighting & Small Power (BZL);(00BZL-03) L&SP incl. BMZ 00 IN USG Area",1,1,0.0000018218,0.0018311292,0.0056968464,16,1.0,0.000218151,0.0068493151,0.0030769231,0.00275,0.0046997389,0.018018018,0.0358744395,1.0,0.0560995307
1.3.1.1.5.5.3-4,00BZL-03-40,"Install Cabling",7112,"CCGTD1_IPS",TT_Task,"58480",-,-,-,100,TK_Complete,07/11/2019,04/10/2019,26/11/2019,12/10/2019,"00BZL-03-30 FS","00BZL-03-30","SC1240 FS,SC1230 FS","SC1240,SC1230",223,255,225,256,52,59,52,59,81,,"CCGT D1_Integrated Programme Schedule;M&E;Construction;M&E Construction;Electrical & I&C;Lighting & Small Power (BZL);(00BZL-03) L&SP incl. BMZ 00 IN USG Area",1,2,0.0000009937,0.0016276704,0.0059003052,19,1.0,0.000266972,0.0068493151,0.0061538462,0.0015,0.0041775457,0.0186615187,0.0426008969,1.0,0.0761038705
1.3.1.1.5.5.4,58479,"(00BZL-01) L&SP incl BMZ 00 IN UBA 81 Area",7112,"CCGTD1_IPS",WBS,"58475",,,,100,Complete,15/10/2019,05/10/2019,23/11/2019,12/10/2019,,,,,219,255,225,256,51,59,52,59,,,"CCGT D1_Integrated Programme Schedule;M&E;Construction;M&E Construction;Electrical & I&C;Lighting & Small Power (BZL)"
1.3.1.1.5.5.4-1,00BZL-01-10,"Install Accessories/Supports",7112,"CCGTD1_IPS",TT_Task,"58479",-,-,-,100,TK_Complete,15/10/2019,05/10/2019,26/10/2019,11/10/2019,"SUB-EIC-180 FS,EDS.1000 FS,KD_E07 FS","SUB-EIC-180,EDS.1000,KD_E07","00BZL-01-30 FS","00BZL-01-30",219,255,221,256,51,59,51,59,79,,"CCGT D1_Integrated Programme Schedule;M&E;Construction;M&E Construction;Electrical & I&C;Lighting & Small Power (BZL);(00BZL-01) L&SP incl BMZ 00 IN UBA 81 Area",3,1,0.0000031053,0.0022380468,0.0052899288,11,1.0,0.0000963023,0.0205479452,0.0030769231,0.0046875,0.0057441253,0.0167310167,0.0246636771,1.0,0.0061722824
1.3.1.1.5.5.4-2,00BZL-01-30,"Install Secondary Containment",7112,"CCGTD1_IPS",TT_Task,"58479",-,-,-,100,TK_Complete,26/10/2019,05/10/2019,09/11/2019,12/10/2019,"00BZL-01-10 FS,SI-BZP4-27 FS","00BZL-01-10,SI-BZP4-27","00BZL-01-40 FS","00BZL-01-40",221,255,223,256,51,59,52,59,80,,"CCGT D1_Integrated Programme Schedule;M&E;Construction;M&E Construction;Electrical & I&C;Lighting & Small Power (BZL);(00BZL-01) L&SP incl BMZ 00 IN UBA 81 Area",2,1,0.0000026499,0.002034588,0.0056968464,14,1.0,0.0001645834,0.0136986301,0.0030769231,0.004,0.0052219321,0.018018018,0.0313901345,1.0,0.0341503123
1.3.1.1.5.5.4-3,00BZL-01-40,"Install Cabling",7112,"CCGTD1_IPS",TT_Task,"58479",-,-,-,100,TK_Complete,09/11/2019,05/10/2019,23/11/2019,12/10/2019,"00BZL-01-30 FS","00BZL-01-30","TOP2110 FS","TOP2110",223,255,225,256,52,59,52,59,81,,"CCGT D1_Integrated Programme Schedule;M&E;Construction;M&E Construction;Electrical & I&C;Lighting & Small Power (BZL);(00BZL-01) L&SP incl BMZ 00 IN UBA 81 Area",1,1,0.0000018632,0.0018311292,0.0059003052,14,1.0,0.0002213295,0.0068493151,0.0030769231,0.0028125,0.0046997389,0.0186615187,0.0313901345,1.0,0.0574019443
1.3.1.1.5.5.5,58478,"(10BZL-02) L&SP incl. BMZ at 10UHA Area",7112,"CCGTD1_IPS",WBS,"58475",,,,100,Complete,30/09/2019,02/07/2019,25/11/2019,12/10/2019,,,,,217,241,225,256,50,56,52,59,,,"CCGT D1_Integrated Programme Schedule;M&E;Construction;M&E Construction;Electrical & I&C;Lighting & Small Power (BZL)"
1.3.1.1.5.5.5-1,10BZL-02-10,"Install Accessories/Supports",7112,"CCGTD1_IPS",TT_Task,"58478",-,-,-,100,TK_Complete,30/09/2019,02/07/2019,18/10/2019,30/07/2019,"EDS.1000 FS,SUB-EIC-180 FS,KD_E07 FS","EDS.1000,SUB-EIC-180,KD_E07","10BZL-02-20 FS","10BZL-02-20",217,241,220,245,50,56,51,57,78,,"CCGT D1_Integrated Programme Schedule;M&E;Construction;M&E Construction;Electrical & I&C;Lighting & Small Power (BZL);(10BZL-02) L&SP incl. BMZ at 10UHA Area",3,1,0.0000041404,0.0024415056,0.0052899288,18,0.0,0.0001058882,0.0205479452,0.0030769231,0.00625,0.0062663185,0.0167310167,0.0403587444,0.0,0.0101000985
1.3.1.1.5.5.5-2,10BZL-02-20,"Install Primary Containment",7112,"CCGTD1_IPS",TT_Task,"58478",-,-,-,100,TK_Complete,11/10/2019,02/07/2019,28/10/2019,30/07/2019,"SI-BZP4-27 FS,10BZL-02-10 FS","SI-BZP4-27,10BZL-02-10","10BZL-02-30 FS","10BZL-02-30",219,241,221,245,51,56,51,57,79,,"CCGT D1_Integrated Programme Schedule;M&E;Construction;M&E Construction;Electrical & I&C;Lighting & Small Power (BZL);(10BZL-02) L&SP incl. BMZ at 10UHA Area",2,1,0.0000038092,0.0022380468,0.0056968464,17,0.0,0.0001730338,0.0136986301,0.0030769231,0.00575,0.0057441253,0.018018018,0.0381165919,0.0,0.0376128805
1.3.1.1.5.5.5-3,10BZL-02-30,"Install Secondary Containment",7112,"CCGTD1_IPS",TT_Task,"58478",-,-,-,100,TK_Complete,21/10/2019,23/09/2019,09/11/2019,12/10/2019,"10BZL-02-20 FS","10BZL-02-20","10BZL-02-40 FS","10BZL-02-40",220,253,223,256,51,59,52,59,80,,"CCGT D1_Integrated Programme Schedule;M&E;Construction;M&E Construction;Electrical & I&C;Lighting & Small Power (BZL);(10BZL-02) L&SP incl. BMZ at 10UHA Area",1,1,0.0000030639,0.002034588,0.0059003052,19,1.0,0.0002285284,0.0068493151,0.0030769231,0.004625,0.0052219321,0.0186615187,0.0426008969,1.0,0.060351684
1.3.1.1.5.5.5-4,10BZL-02-40,"Install Cabling",7112,"CCGTD1_IPS",TT_Task,"58478",-,-,-,100,TK_Complete,05/11/2019,03/10/2019,25/11/2019,12/10/2019,"10BZL-02-30 FS","10BZL-02-30","TOP1810 FS","TOP1810",222,254,225,256,52,59,52,59,81,,"CCGT D1_Integrated Programme Schedule;M&E;Construction;M&E Construction;Electrical & I&C;Lighting & Small Power (BZL);(10BZL-02) L&SP incl. BMZ at 10UHA Area",1,1,0.0000022358,0.0018311292,0.006103764,20,1.0,0.0002758202,0.0068493151,0.0030769231,0.003375,0.0046997389,0.0193050193,0.0448430493,1.0,0.079729411
1.3.1.1.5.5.6,58477,"(10BZL-01) L&SP incl BMZ inside 10UMC",7112,"CCGTD1_IPS",WBS,"58475",,,,100,Complete,30/09/2019,07/10/2019,28/10/2019,19/10/2019,,,,,217,255,221,257,50,59,51,60,,,"CCGT D1_Integrated Programme Schedule;M&E;Construction;M&E Construction;Electrical & I&C;Lighting & Small Power (BZL)"
1.3.1.1.5.5.6-1,10BZL-01-10,"Install Accessories/Supports",7112,"CCGTD1_IPS",TT_Task,"58477",-,-,-,100,TK_Complete,30/09/2019,07/10/2019,16/10/2019,19/10/2019,"EDS.1000 FS,SUB-EIC-180 FS,KD_C27 FS","EDS.1000,SUB-EIC-180,KD_C27","10BZL-01-20 SS","10BZL-01-20",217,255,220,257,50,59,51,60,78,,"CCGT D1_Integrated Programme Schedule;M&E;Construction;M&E Construction;Electrical & I&C;Lighting & Small Power (BZL);(10BZL-01) L&SP incl BMZ inside 10UMC",3,1,0.0000031508,0.0022380468,0.0052899288,16,1.0,0.000099887,0.0205479452,0.0030769231,0.00475625,0.0057441253,0.0167310167,0.0358744395,1.0,0.007641085
1.3.1.1.5.5.6-2,10BZL-01-20,"Install Primary Containment",7112,"CCGTD1_IPS",TT_Task,"58477",-,-,-,100,TK_Complete,08/10/2019,12/10/2019,22/10/2019,17/10/2019,"SI-BZP4-27 FS,10BZL-01-10 SS","SI-BZP4-27,10BZL-01-10","10BZL-01-30 SS","10BZL-01-30",218,256,220,256,51,59,51,59,79,,"CCGT D1_Integrated Programme Schedule;M&E;Construction;M&E Construction;Electrical & I&C;Lighting & Small Power (BZL);(10BZL-01) L&SP incl BMZ inside 10UMC",2,1,0.0000026954,0.002034588,0.0056968464,14,1.0,0.0001676337,0.0136986301,0.0030769231,0.00406875,0.0052219321,0.018018018,0.0313901345,1.0,0.0354001717
1.3.1.1.5.5.6-3,10BZL-01-30,"Install Secondary Containment",7112,"CCGTD1_IPS",TT_Task,"58477",-,-,-,100,TK_Complete,11/10/2019,11/10/2019,22/10/2019,17/10/2019,"10BZL-01-20 SS","10BZL-01-20","10BZL-01-40 SS","10BZL-01-40",219,256,220,256,51,59,51,59,79,,"CCGT D1_Integrated Programme Schedule;M&E;Construction;M&E Construction;Electrical & I&C;Lighting & Small Power (BZL);(10BZL-01) L&SP incl BMZ inside 10UMC",1,1,0.0000019087,0.0018311292,0.0059003052,11,1.0,0.0002239282,0.0068493151,0.0030769231,0.00288125,0.0046997389,0.0186615187,0.0246636771,1.0,0.0584667345
1.3.1.1.5.5.6-4,10BZL-01-40,"Install Cabling",7112,"CCGTD1_IPS",TT_Task,"58477",-,-,-,100,TK_Complete,17/10/2019,11/10/2019,28/10/2019,19/10/2019,"10BZL-01-30 SS","10BZL-01-30","SC1240 FS,SC1230 FS","SC1240,SC1230",220,256,221,257,51,59,51,60,79,,"CCGT D1_Integrated Programme Schedule;M&E;Construction;M&E Construction;Electrical & I&C;Lighting & Small Power (BZL);(10BZL-01) L&SP incl BMZ inside 10UMC",1,2,0.0000010392,0.0016276704,0.006103764,11,1.0,0.000271898,0.0068493151,0.0061538462,0.00156875,0.0041775457,0.0193050193,0.0246636771,1.0,0.0781222968
1.3.1.1.5.5.7,58476,"(10BZL-03) L&SP incl. BMZ in UBA and UBF and UBE",7112,"CCGTD1_IPS",WBS,"58475",,,,100,Complete,22/08/2019,01/06/2019,28/03/2020,05/02/2020,,,,,212,237,243,272,49,55,56,63,,,"CCGT D1_Integrated Programme Schedule;M&E;Construction;M&E Construction;Electrical & I&C;Lighting & Small Power (BZL)"
1.3.1.1.5.5.7-1,10BZL-03-20,"Install Primary Containment",7112,"CCGTD1_IPS",TT_Task,"58476",-,-,-,100,TK_Complete,09/09/2019,03/07/2019,03/10/2019,20/07/2019,"SI-BZP4-27 FS,10BZL-03-10 FS","SI-BZP4-27,10BZL-03-10","10BZL-03-30 FS","10BZL-03-30",214,241,218,244,50,56,50,56,76,,"CCGT D1_Integrated Programme Schedule;M&E;Construction;M&E Construction;Electrical & I&C;Lighting & Small Power (BZL);(10BZL-03) L&SP incl. BMZ in UBA and UBF and UBE",2,1,0.0000004968,0.0004069176,0.0012207528,24,1.0,0.0001746438,0.0136986301,0.0030769231,0.00075,0.0010443864,0.0038610039,0.0538116592,1.0,0.0382725456
1.3.1.1.5.5.7-2,10BZL-03-30,"Install Secondary Containment",7112,"CCGTD1_IPS",TT_Task,"58476",-,-,-,100,TK_Complete,04/10/2019,20/07/2019,25/10/2019,28/08/2019,"10BZL-03-20 FS,SUB-EIC-180 FS","10BZL-03-20,SUB-EIC-180","10BZL-03-40 FS","10BZL-03-40",218,244,221,249,50,56,51,58,78,,"CCGT D1_Integrated Programme Schedule;M&E;Construction;M&E Construction;Electrical & I&C;Lighting & Small Power (BZL);(10BZL-03) L&SP incl. BMZ in UBA and UBF and UBE",2,1,0.0000012421,0.0002034588,0.006103764,21,0.0,0.0002309037,0.0136986301,0.0030769231,0.001875,0.0005221932,0.0193050193,0.0470852018,0.0,0.0613249259
1.3.1.1.5.5.7-3,10BZL-03-40,"Install Cabling",7112,"CCGTD1_IPS",TT_Task,"58476",-,-,-,100,TK_Complete,04/10/2019,14/08/2019,01/11/2019,28/08/2019,"10BZL-03-30 FS","10BZL-03-30","","",218,247,222,249,50,57,51,58,78,,"CCGT D1_Integrated Programme Schedule;M&E;Construction;M&E Construction;Electrical & I&C;Lighting & Small Power (BZL);(10BZL-03) L&SP incl. BMZ in UBA and UBF and UBE",1,0,0.0,0.0,0.0063072228,28,1.0,0.0002778433,0.0068493151,0.0,0.0,0.0,0.0199485199,0.0627802691,1.0,0.0805583661
1.3.1.1.5.5.7-4,10BZL-03-10,"Install Accessories/Supports",7112,"CCGTD1_IPS",TT_Task,"58476",-,-,-,100,TK_Complete,22/08/2019,01/06/2019,07/09/2019,03/07/2019,"EDS.1000 FS,KD_E07 FS,KD_C07 FS","EDS.1000,KD_E07,KD_C07","10BZL-03-20 FS","10BZL-03-20",212,237,214,241,49,55,50,56,70,,"CCGT D1_Integrated Programme Schedule;M&E;Construction;M&E Construction;Electrical & I&C;Lighting & Small Power (BZL);(10BZL-03) L&SP incl. BMZ in UBA and UBF and UBE",3,1,0.0000003726,0.0006103764,0.0008138352,16,0.0,0.0001069755,0.0205479452,0.0030769231,0.0005625,0.0015665796,0.0025740026,0.0358744395,0.0,0.0105456085
1.3.1.1.5.5.7-5,10BZL-03-50,"Assumption Civil Contractor L&SP Complete",7112,"CCGTD1_IPS",TT_FinMile,"58476",-,-,-,100,TK_Complete,28/03/2020,05/02/2020,28/03/2020,05/02/2020,"","","TOP1030 FS","TOP1030",243,272,243,272,56,63,56,63,90,,"CCGT D1_Integrated Programme Schedule;M&E;Construction;M&E Construction;Electrical & I&C;Lighting & Small Power (BZL);(10BZL-03) L&SP incl. BMZ in UBA and UBF and UBE",0,1,0.0,0.0018311292,0.0,0,1.0,0.0000812387,0.0,0.0030769231,0.0,0.0046997389,0.0,0.0,1.0,0.0
1.3.1.1.5.6,58473,"Detection (CY)",7112,"CCGTD1_IPS",WBS,"58468",,,,100,Complete,30/04/2019,07/03/2019,01/08/2019,08/01/2020,,,,,195,224,209,268,45,52,48,62,,,"CCGT D1_Integrated Programme Schedule;M&E;Construction;M&E Construction;Electrical & I&C"
1.3.1.1.5.6.1,58474,"(10CYQ) Gas Detection System",7112,"CCGTD1_IPS",WBS,"58473",,,,100,Complete,30/04/2019,07/03/2019,01/08/2019,08/01/2020,,,,,195,224,209,268,45,52,48,62,,,"CCGT D1_Integrated Programme Schedule;M&E;Construction;M&E Construction;Electrical & I&C;Detection (CY)"
1.3.1.1.5.6.1-1,A2220,"Installation of Gas Detection and System",7112,"CCGTD1_IPS",TT_Task,"58474",-,-,-,100,TK_Complete,30/04/2019,07/05/2019,03/06/2019,22/05/2019,"10MBA1067 SS","10MBA1067","TOP1400 FS,ECS20.1030 FS","TOP1400,ECS20.1030",195,233,200,235,45,54,46,55,56,,"CCGT D1_Integrated Programme Schedule;M&E;Construction;M&E Construction;Electrical & I&C;Detection (CY);(10CYQ) Gas Detection System",1,2,0.0000002898,0.0026449644,0.0008138352,34,1.0,0.0001057631,0.0068493151,0.0061538462,0.0004375,0.0067885117,0.0025740026,0.0762331839,1.0,0.0100488093
1.3.1.1.5.6.1-2,FSS22.1140,"Installation of Gas Detection System for BOP",7112,"CCGTD1_IPS",TT_Task,"58474",-,-,-,100,TK_Complete,30/04/2019,07/03/2019,01/08/2019,08/01/2020,"SI-MKG4-60 FS,SI1SGJ4-25 FS","SI-MKG4-60,SI1SGJ4-25","TOP1400 FS","TOP1400",195,224,209,268,45,52,48,62,56,,"CCGT D1_Integrated Programme Schedule;M&E;Construction;M&E Construction;Electrical & I&C;Detection (CY);(10CYQ) Gas Detection System",2,1,0.0000009316,0.0022380468,0.0006103764,93,0.0,0.0001926584,0.0136986301,0.0030769231,0.00140625,0.0057441253,0.0019305019,0.2085201794,0.0,0.0456539866
1.3.1.1.5.6.1-3,ECS20.1030,"Installation of instrument, equipment and cable for gas detection system for Gas Turbine & Auxiliaries",7112,"CCGTD1_IPS",TT_Task,"58474",-,-,-,100,TK_Complete,23/05/2019,23/05/2019,15/06/2019,17/10/2019,"A2220 FS","A2220","SC1200 FS,TOP1400 FS","SC1200,TOP1400",199,235,202,256,46,55,47,59,59,,"CCGT D1_Integrated Programme Schedule;M&E;Construction;M&E Construction;Electrical & I&C;Detection (CY);(10CYQ) Gas Detection System",1,2,0.0000001656,0.0024415056,0.001017294,23,0.0,0.0001712786,0.0068493151,0.0061538462,0.00025,0.0062663185,0.0032175032,0.0515695067,0.0,0.0368936706
1.3.1.1.5.7,58469,"Lightning Protection / Earthing / Cathodic Protection",7112,"CCGTD1_IPS",WBS,"58468",,,,100,Complete,01/04/2019,01/04/2019,17/12/2019,12/10/2019,,,,,191,228,228,256,44,53,53,59,,,"CCGT D1_Integrated Programme Schedule;M&E;Construction;M&E Construction;Electrical & I&C"
1.3.1.1.5.7.1,58472,"(00BAW-03) Lightening Protection",7112,"CCGTD1_IPS",WBS,"58469",,,,100,Complete,01/04/2019,08/04/2019,17/12/2019,08/10/2019,,,,,191,229,228,255,44,53,53,59,,,"CCGT D1_Integrated Programme Schedule;M&E;Construction;M&E Construction;Electrical & I&C;Lightning Protection / Earthing / Cathodic Protection"
1.3.1.1.5.7.1-1,00BAW-03-10,"Install Cabling",7112,"CCGTD1_IPS",TT_Task,"58472",-,-,-,100,TK_Complete,31/05/2019,22/06/2019,24/06/2019,12/09/2019,"00BAW-03-70 SS,00BAW-03-80 SS","00BAW-03-70,00BAW-03-80","00BAW-03-60 FS","00BAW-03-60",200,240,203,251,46,56,47,58,60,,"CCGT D1_Integrated Programme Schedule;M&E;Construction;M&E Construction;Electrical & I&C;Lightning Protection / Earthing / Cathodic Protection;(00BAW-03) Lightening Protection",2,1,0.0000004554,0.0022380468,0.0063072228,24,0.0,0.0003771981,0.0136986301,0.0030769231,0.0006875,0.0057441253,0.0199485199,0.0538116592,0.0,0.1212688045
1.3.1.1.5.7.1-2,00BAW-03-20,"Install Accessories/Supports/Mounting/Fittings",7112,"CCGTD1_IPS",TT_Task,"58472",-,-,-,100,TK_Complete,01/04/2019,08/04/2019,06/05/2019,17/05/2019,"SUB-EIC-180 FS","SUB-EIC-180","00BAW-03-30 FS","00BAW-03-30",191,229,196,235,44,53,45,54,50,,"CCGT D1_Integrated Programme Schedule;M&E;Construction;M&E Construction;Electrical & I&C;Lightning Protection / Earthing / Cathodic Protection;(00BAW-03) Lightening Protection",1,1,0.0000076597,0.0036622584,0.0048830112,35,0.6,0.0000829126,0.0068493151,0.0030769231,0.0115625,0.0093994778,0.0154440154,0.0784753363,0.6,0.0006858876
1.3.1.1.5.7.1-3,00BAW-03-30,"Install Equipment",7112,"CCGTD1_IPS",TT_Task,"58472",-,-,-,100,TK_Complete,15/05/2019,15/05/2019,15/06/2019,03/07/2019,"00BAW-03-20 FS","00BAW-03-20","00BAW-03-40 FS","00BAW-03-40",198,234,202,241,46,54,47,56,58,,"CCGT D1_Integrated Programme Schedule;M&E;Construction;M&E Construction;Electrical & I&C;Lightning Protection / Earthing / Cathodic Protection;(00BAW-03) Lightening Protection",1,1,0.0000073699,0.0034587996,0.00508647,31,0.0,0.0001518201,0.0068493151,0.0030769231,0.011125,0.0088772846,0.0160875161,0.0695067265,0.0,0.0289206048
1.3.1.1.5.7.1-4,00BAW-03-40,"Install Primary Containment",7112,"CCGTD1_IPS",TT_Task,"58472",-,-,-,100,TK_Complete,29/05/2019,20/05/2019,27/06/2019,16/07/2019,"SI-BZP4-27 FS,00BAW-03-30 FS","SI-BZP4-27,00BAW-03-30","00BAW-03-50 FS","00BAW-03-50",200,235,204,243,46,54,47,56,60,,"CCGT D1_Integrated Programme Schedule;M&E;Construction;M&E Construction;Electrical & I&C;Lightning Protection / Earthing / Cathodic Protection;(00BAW-03) Lightening Protection",2,1,0.0000075355,0.0032553408,0.0054933876,29,0.0,0.0002132942,0.0136986301,0.0030769231,0.011375,0.0083550914,0.0173745174,0.0650224215,0.0,0.0541095019
1.3.1.1.5.7.1-5,00BAW-03-50,"Install Secondary Containment",7112,"CCGTD1_IPS",TT_Task,"58472",-,-,-,100,TK_Complete,15/06/2019,20/05/2019,10/07/2019,20/07/2019,"00BAW-03-40 FS","00BAW-03-40","00BAW-03-80 FS,00BAW-03-70 FS","00BAW-03-80,00BAW-03-70",202,235,206,244,47,54,48,56,63,,"CCGT D1_Integrated Programme Schedule;M&E;Construction;M&E Construction;Electrical & I&C;Lightning Protection / Earthing / Cathodic Protection;(00BAW-03) Lightening Protection",1,2,0.0000070387,0.003051882,0.0056968464,25,0.0,0.0002628271,0.0068493151,0.0061538462,0.010625,0.0078328982,0.018018018,0.0560538117,0.0,0.0744054966
1.3.1.1.5.7.1-6,00BAW-03-60,"Test",7112,"CCGTD1_IPS",TT_Task,"58472",-,-,-,100,TK_Complete,09/08/2019,28/08/2019,14/08/2019,08/10/2019,"00BAW-03-10 FS,00BAW-03-80 FS,00BAW-03-90 FS","00BAW-03-10,00BAW-03-80,00BAW-03-90","SC1210 FS,SC1240 FS,SC1230 FS","SC1210,SC1240,SC1230",210,249,211,255,49,58,49,59,69,,"CCGT D1_Integrated Programme Schedule;M&E;Construction;M&E Construction;Electrical & I&C;Lightning Protection / Earthing / Cathodic Protection;(00BAW-03) Lightening Protection",3,3,0.0000033123,0.002034588,0.0067141404,5,0.0,0.0005046576,0.0205479452,0.0092307692,0.005,0.0052219321,0.0212355212,0.0112107623,0.0,0.1734950985
1.3.1.1.5.7.1-7,00BAW-03-70,"Install All Termination Rods",7112,"CCGTD1_IPS",TT_Task,"58472",-,-,-,100,TK_Complete,21/06/2019,23/05/2019,06/07/2019,31/07/2019,"00BAW-03-50 FS","00BAW-03-50","00BAW-03-10 SS","00BAW-03-10",203,235,205,245,47,55,47,57,64,,"CCGT D1_Integrated Programme Schedule;M&E;Construction;M&E Construction;Electrical & I&C;Lightning Protection / Earthing / Cathodic Protection;(00BAW-03) Lightening Protection",1,1,0.0000006004,0.0024415056,0.0059003052,15,0.0,0.0001611765,0.0068493151,0.0030769231,0.00090625,0.0062663185,0.0186615187,0.033632287,0.0,0.0327543708
1.3.1.1.5.7.1-8,00BAW-03-80,"Install Downcomers",7112,"CCGTD1_IPS",TT_Task,"58472",-,-,-,100,TK_Complete,31/05/2019,22/06/2019,27/06/2019,22/08/2019,"00BAW-03-50 FS","00BAW-03-50","00BAW-03-10 SS,00BAW-03-60 FS,00BAW-03-90 FS","00BAW-03-10,00BAW-03-60,00BAW-03-90",200,240,204,248,46,56,47,58,60,,"CCGT D1_Integrated Programme Schedule;M&E;Construction;M&E Construction;Electrical & I&C;Lightning Protection / Earthing / Cathodic Protection;(00BAW-03) Lightening Protection",1,3,0.0000046579,0.0026449644,0.0059003052,27,0.0,0.0002251268,0.0068493151,0.0092307692,0.00703125,0.0067885117,0.0186615187,0.0605381166,0.0,0.0589578674
1.3.1.1.5.7.1-9,00BAW-03-90,"Assumption Underground Grid Complete",7112,"CCGTD1_IPS",TT_FinMile,"58472",-,-,-,100,TK_Complete,17/12/2019,28/08/2019,17/12/2019,28/08/2019,"00BAW-03-80 FS","00BAW-03-80","00BAW-03-60 FS","00BAW-03-60",228,249,228,249,53,58,53,58,85,,"CCGT D1_Integrated Programme Schedule;M&E;Construction;M&E Construction;Electrical & I&C;Lightning Protection / Earthing / Cathodic Protection;(00BAW-03) Lightening Protection",1,1,0.0,0.0022380468,0.006103764,0,1.0,0.0000812387,0.0068493151,0.0030769231,0.0,0.0057441253,0.0193050193,0.0,1.0,0.0
1.3.1.1.5.7.2,58471,"(00BAW-02) Earthing Grid Complete",7112,"CCGTD1_IPS",WBS,"58469",,,,100,Complete,01/04/2019,10/04/2019,16/09/2019,12/10/2019,,,,,191,229,215,256,44,53,50,59,,,"CCGT D1_Integrated Programme Schedule;M&E;Construction;M&E Construction;Electrical & I&C;Lightning Protection / Earthing / Cathodic Protection"
1.3.1.1.5.7.2-1,00BAW-02-10,"Lay the Earthing Conductors from the Equipment to Designated Earth Pit",7112,"CCGTD1_IPS",TT_Task,"58471",-,-,-,100,TK_Complete,17/06/2019,21/05/2019,23/07/2019,23/07/2019,"SI-BZK4-25 FS,00BAW-02-40 SS,SI-BZK4-58 FS","SI-BZK4-25,00BAW-02-40,SI-BZK4-58","00BAW-02-60 FS,00BAW-02-80 SS","00BAW-02-60,00BAW-02-80",202,235,207,244,47,54,48,57,63,,"CCGT D1_Integrated Programme Schedule;M&E;Construction;M&E Construction;Electrical & I&C;Lightning Protection / Earthing / Cathodic Protection;(00BAW-02) Earthing Grid Complete",3,2,0.0000286757,0.0024415056,0.0337741607,36,0.0,0.0006751544,0.0205479452,0.0061538462,0.0432864583,0.0062663185,0.1068211068,0.0807174888,0.0,0.2433558085
1.3.1.1.5.7.2-2,00BAW-02-20,"Install Accessories/Supports/Mounting Fitting",7112,"CCGTD1_IPS",TT_Task,"58471",-,-,-,100,TK_Complete,01/04/2019,10/04/2019,12/04/2019,10/05/2019,"SUB-EIC-180 FS,SI-BZK4-58 FS","SUB-EIC-180,SI-BZK4-58","00BAW-02-30 FS","00BAW-02-30",191,229,193,234,44,53,45,54,50,,"CCGT D1_Integrated Programme Schedule;M&E;Construction;M&E Construction;Electrical & I&C;Lightning Protection / Earthing / Cathodic Protection;(00BAW-02) Earthing Grid Complete",2,1,0.0000057551,0.0032553408,0.00508647,11,0.0,0.0000823619,0.0136986301,0.0030769231,0.0086875,0.0083550914,0.0160875161,0.0246636771,0.0,0.0004602323
1.3.1.1.5.7.2-3,00BAW-02-30,"Install equipment",7112,"CCGTD1_IPS",TT_Task,"58471",-,-,-,100,TK_Complete,12/04/2019,12/04/2019,27/04/2019,19/06/2019,"00BAW-02-20 FS","00BAW-02-20","00BAW-02-50 FS,00BAW-02-40 FS","00BAW-02-50,00BAW-02-40",193,230,195,239,45,53,45,55,53,,"CCGT D1_Integrated Programme Schedule;M&E;Construction;M&E Construction;Electrical & I&C;Lightning Protection / Earthing / Cathodic Protection;(00BAW-02) Earthing Grid Complete",1,2,0.0000053411,0.003051882,0.0052899288,15,0.0,0.0001513515,0.0068493151,0.0061538462,0.0080625,0.0078328982,0.0167310167,0.033632287,0.0,0.0287285862
1.3.1.1.5.7.2-4,00BAW-02-40,"Install Secondary Containment",7112,"CCGTD1_IPS",TT_Task,"58471",-,-,-,100,TK_Complete,31/05/2019,22/05/2019,05/07/2019,18/07/2019,"00SCA10 FF,SI-BZP4-27 FS,00BAW-02-50 SS,10MAJ10 FF,00BAW-02-30 FS,10CFE10 FF,00PAA10 FF,10MAW10 FF","00SCA10,SI-BZP4-27,00BAW-02-50,10MAJ10,00BAW-02-30,10CFE10,00PAA10,10MAW10","00BAW-02-10 SS","00BAW-02-10",200,235,205,243,46,55,47,56,60,,"CCGT D1_Integrated Programme Schedule;M&E;Construction;M&E Construction;Electrical & I&C;Lightning Protection / Earthing / Cathodic Protection;(00BAW-02) Earthing Grid Complete",8,1,0.0000345136,0.0026449644,0.0333672431,35,0.0,0.0006936401,0.0547945205,0.0030769231,0.0520989583,0.0067885117,0.1055341055,0.0784753363,0.0,0.2509303022
1.3.1.1.5.7.2-5,00BAW-02-50,"Install Primary Containment",7112,"CCGTD1_IPS",TT_Task,"58471",-,-,-,100,TK_Complete,23/05/2019,20/05/2019,27/06/2019,20/07/2019,"00BAW-02-30 FS","00BAW-02-30","00BAW-02-40 SS","00BAW-02-40",199,235,204,244,46,54,47,56,59,,"CCGT D1_Integrated Programme Schedule;M&E;Construction;M&E Construction;Electrical & I&C;Lightning Protection / Earthing / Cathodic Protection;(00BAW-02) Earthing Grid Complete",1,1,0.0,0.0028484232,0.0054933876,35,0.0,0.0001456485,0.0068493151,0.0030769231,0.0,0.007310705,0.0173745174,0.0784753363,0.0,0.0263917898
1.3.1.1.5.7.2-6,00BAW-02-60,"Test",7112,"CCGTD1_IPS",TT_Task,"58471",-,-,-,100,TK_Complete,10/09/2019,07/09/2019,16/09/2019,12/10/2019,"00BAW-02-10 FS,00BAW-02-80 FS","00BAW-02-10,00BAW-02-80","SC1210 FS,SC1240 FS,SC1230 FS","SC1210,SC1240,SC1230",214,251,215,256,50,58,50,59,76,,"CCGT D1_Integrated Programme Schedule;M&E;Construction;M&E Construction;Electrical & I&C;Lightning Protection / Earthing / Cathodic Protection;(00BAW-02) Earthing Grid Complete",2,3,0.0000157576,0.002034588,0.0341810783,6,0.0,0.0006581521,0.0136986301,0.0092307692,0.0237864583,0.0052219321,0.1081081081,0.0134529148,0.0,0.2363891712
1.3.1.1.5.7.2-7,00BAW-02-80,"Complete all Terminations",7112,"CCGTD1_IPS",TT_Task,"58471",-,-,-,100,TK_Complete,06/06/2019,15/06/2019,29/06/2019,10/10/2019,"00BAW-02-10 SS","00BAW-02-10","00BAW-02-60 FS","00BAW-02-60",201,239,204,255,46,55,47,59,62,,"CCGT D1_Integrated Programme Schedule;M&E;Construction;M&E Construction;Electrical & I&C;Lightning Protection / Earthing / Cathodic Protection;(00BAW-02) Earthing Grid Complete",1,1,0.0,0.0022380468,0.0339776195,23,0.0,0.000537391,0.0068493151,0.0030769231,0.0,0.0057441253,0.1074646075,0.0515695067,0.0,0.1869075405
1.3.1.1.5.7.3,58470,"(00BAW-01) Earthing Grid for back-energizing",7112,"CCGTD1_IPS",WBS,"58469",,,,100,Complete,01/04/2019,01/04/2019,07/08/2019,14/09/2019,,,,,191,228,210,252,44,53,49,58,,,"CCGT D1_Integrated Programme Schedule;M&E;Construction;M&E Construction;Electrical & I&C;Lightning Protection / Earthing / Cathodic Protection"
1.3.1.1.5.7.3-1,00BAW-01-10,"Install Cabling",7112,"CCGTD1_IPS",TT_Task,"58470",-,-,-,100,TK_Complete,18/06/2019,24/05/2019,13/07/2019,14/09/2019,"00BAW-01-50 FS,SI-BZK4-25 FS","00BAW-01-50,SI-BZK4-25","00BAW-01-60 FS","00BAW-01-60",202,236,206,252,47,55,48,58,63,,"CCGT D1_Integrated Programme Schedule;M&E;Construction;M&E Construction;Electrical & I&C;Lightning Protection / Earthing / Cathodic Protection;(00BAW-01) Earthing Grid for back-energizing",2,1,0.0000001242,0.0022380468,0.0065106816,25,0.0,0.0002707225,0.0136986301,0.0030769231,0.0001875,0.0057441253,0.0205920206,0.0560538117,0.0,0.0776406093
1.3.1.1.5.7.3-2,00BAW-01-20,"Install Accessories/Supports",7112,"CCGTD1_IPS",TT_Task,"58470",-,-,-,100,TK_Complete,01/04/2019,01/04/2019,23/04/2019,18/05/2019,"SUB-EIC-180 FS,KD_C17 FS,KD_C07 FS","SUB-EIC-180,KD_C17,KD_C07","00BAW-01-30 FS","00BAW-01-30",191,228,194,235,44,53,45,54,50,,"CCGT D1_Integrated Programme Schedule;M&E;Construction;M&E Construction;Electrical & I&C;Lightning Protection / Earthing / Cathodic Protection;(00BAW-01) Earthing Grid for back-energizing",3,1,0.000005278,0.003051882,0.0052899288,22,0.0,0.000090848,0.0205479452,0.0030769231,0.0079671875,0.0078328982,0.0167310167,0.0493273543,0.0,0.0039373938
1.3.1.1.5.7.3-3,00BAW-01-30,"Install equipment",7112,"CCGTD1_IPS",TT_Task,"58470",-,-,-,100,TK_Complete,20/05/2019,13/05/2019,08/06/2019,29/06/2019,"00BAW-01-20 FS","00BAW-01-20","00BAW-01-40 FS","00BAW-01-40",198,234,201,241,46,54,47,56,59,,"CCGT D1_Integrated Programme Schedule;M&E;Construction;M&E Construction;Electrical & I&C;Lightning Protection / Earthing / Cathodic Protection;(00BAW-01) Earthing Grid for back-energizing",1,1,0.0000047811,0.0028484232,0.0054933876,19,0.0,0.0001585727,0.0068493151,0.0030769231,0.0072171875,0.007310705,0.0173745174,0.0426008969,0.0,0.0316874337
1.3.1.1.5.7.3-4,00BAW-01-40,"Install Primary Containment",7112,"CCGTD1_IPS",TT_Task,"58470",-,-,-,100,TK_Complete,10/06/2019,15/05/2019,13/06/2019,16/07/2019,"SI-BZP4-27 FS,00BAW-01-30 FS","SI-BZP4-27,00BAW-01-30","00BAW-01-50 FS","00BAW-01-50",201,234,202,243,47,54,47,56,62,,"CCGT D1_Integrated Programme Schedule;M&E;Construction;M&E Construction;Electrical & I&C;Lightning Protection / Earthing / Cathodic Protection;(00BAW-01) Earthing Grid for back-energizing",2,1,0.0000044499,0.0026449644,0.0059003052,3,0.0,0.0002165036,0.0136986301,0.0030769231,0.0067171875,0.0067885117,0.0186615187,0.0067264574,0.0,0.0554245464
1.3.1.1.5.7.3-5,00BAW-01-50,"Install Secondary Containment",7112,"CCGTD1_IPS",TT_Task,"58470",-,-,-,100,TK_Complete,13/06/2019,24/05/2019,18/06/2019,17/07/2019,"00BAW-01-40 FS","00BAW-01-40","00BAW-01-10 FS,00BAW-01-60 FS","00BAW-01-10,00BAW-01-60",202,236,202,243,47,55,47,56,63,,"CCGT D1_Integrated Programme Schedule;M&E;Construction;M&E Construction;Electrical & I&C;Lightning Protection / Earthing / Cathodic Protection;(00BAW-01) Earthing Grid for back-energizing",1,2,0.000003746,0.0024415056,0.006103764,5,0.0,0.0002655679,0.0068493151,0.0061538462,0.0056546875,0.0062663185,0.0193050193,0.0112107623,0.0,0.0755285352
1.3.1.1.5.7.3-6,00BAW-01-60,"Test",7112,"CCGTD1_IPS",TT_Task,"58470",-,-,-,100,TK_Complete,02/08/2019,17/08/2019,07/08/2019,24/08/2019,"00BAW-01-10 FS,00BAW-01-50 FS","00BAW-01-10,00BAW-01-50","SC1230 FS,SC1240 FS,SC1210 FS","SC1230,SC1240,SC1210",209,248,210,249,48,57,49,58,68,,"CCGT D1_Integrated Programme Schedule;M&E;Construction;M&E Construction;Electrical & I&C;Lightning Protection / Earthing / Cathodic Protection;(00BAW-01) Earthing Grid for back-energizing",2,3,0.0000022141,0.002034588,0.0067141404,5,0.8,0.0003495284,0.0136986301,0.0092307692,0.0033421875,0.0052219321,0.0212355212,0.0112107623,0.8,0.1099311902
1.3.1.1.6,58460,"Switchgear",7112,"CCGTD1_IPS",WBS,"58325",,,,100,Complete,01/03/2018,22/02/2018,09/09/2019,24/08/2019,,,,,135,170,214,249,31,39,50,58,,,"CCGT D1_Integrated Programme Schedule;M&E;Construction;M&E Construction"
1.3.1.1.6.1,58461,"Switchgear",7112,"CCGTD1_IPS",WBS,"58460",,,,100,Complete,01/03/2018,22/02/2018,09/09/2019,24/08/2019,,,,,135,170,214,249,31,39,50,58,,,"CCGT D1_Integrated Programme Schedule;M&E;Construction;M&E Construction;Switchgear"
1.3.1.1.6.1.1,58467,"(10BT) DC-Switchgear 10BU",7112,"CCGTD1_IPS",WBS,"58461",,,,100,Complete,01/04/2019,09/04/2019,15/06/2019,25/07/2019,,,,,191,229,202,244,44,53,47,57,,,"CCGT D1_Integrated Programme Schedule;M&E;Construction;M&E Construction;Switchgear;Switchgear"
1.3.1.1.6.1.1-1,ECS19.1210,"Installation of Batteries, Battery Charger, Converter & Inverter and UPS System",7112,"CCGTD1_IPS",TT_Task,"58467",-,-,-,100,TK_Complete,09/05/2019,09/05/2019,05/06/2019,18/06/2019,"SI1BFA4-10 FS,EDS.1010 FS,10BT10 FS","SI1BFA4-10,EDS.1010,10BT10","10BT60 FS","10BT60",197,233,201,239,46,54,46,55,58,,"CCGT D1_Integrated Programme Schedule;M&E;Construction;M&E Construction;Switchgear;Switchgear;(10BT) DC-Switchgear 10BU",3,1,0.0000177209,0.0052899288,0.0056968464,27,0.0,0.0002864357,0.0205479452,0.0030769231,0.02675,0.0135770235,0.018018018,0.0605381166,0.0,0.0840790921
1.3.1.1.6.1.1-2,10BT10,"Switchgear Cubicles Installation/ Bolting",7112,"CCGTD1_IPS",TT_Task,"58467",-,-,-,100,TK_Complete,01/04/2019,09/04/2019,17/04/2019,08/05/2019,"SI1BFA4-10 FS,SUB-EIC-180 FS,KD_D02 FS","SI1BFA4-10,SUB-EIC-180,KD_D02","ECS19.1210 FS","ECS19.1210",191,229,194,233,44,53,45,54,50,,"CCGT D1_Integrated Programme Schedule;M&E;Construction;M&E Construction;Switchgear;Switchgear;(10BT) DC-Switchgear 10BU",3,1,0.0000149054,0.0054933876,0.0052899288,16,0.0,0.0001088069,0.0205479452,0.0030769231,0.0225,0.0140992167,0.0167310167,0.0358744395,0.0,0.0112960156
1.3.1.1.6.1.1-3,10BT20,"Cable Raceway",7112,"CCGTD1_IPS",TT_Task,"58467",-,-,-,100,TK_Complete,30/04/2019,30/04/2019,13/05/2019,13/05/2019,"","","10BT30 FS,10BT40 FS","10BT30,10BT40",195,232,197,234,45,54,46,54,56,,"CCGT D1_Integrated Programme Schedule;M&E;Construction;M&E Construction;Switchgear;Switchgear;(10BT) DC-Switchgear 10BU",0,2,0.0,0.0059003052,0.0,13,1.0,0.0000812387,0.0,0.0061538462,0.0,0.0151436031,0.0,0.0291479821,1.0,0.0
1.3.1.1.6.1.1-4,10BT30,"Protection Panel",7112,"CCGTD1_IPS",TT_Task,"58467",-,-,-,100,TK_Complete,13/04/2019,13/04/2019,17/04/2019,17/05/2019,"10BT20 FS","10BT20","10BT50 FS","10BT50",193,230,194,235,45,53,45,54,54,,"CCGT D1_Integrated Programme Schedule;M&E;Construction;M&E Construction;Switchgear;Switchgear;(10BT) DC-Switchgear 10BU",1,1,0.000000559,0.0054933876,0.0002034588,4,0.0,0.0000950701,0.0068493151,0.0030769231,0.00084375,0.0140992167,0.0006435006,0.0089686099,0.0,0.0056673914
1.3.1.1.6.1.1-5,10BT40,"UPS/DC Cable Pulling",7112,"CCGTD1_IPS",TT_Task,"58467",-,-,-,100,TK_Complete,14/05/2019,14/05/2019,30/05/2019,24/07/2019,"SI-BZK4-25 FS,SI-BZK4-52 FS,10BT20 FS","SI-BZK4-25,SI-BZK4-52,10BT20","10BT50 FS","10BT50",197,234,200,244,46,54,46,57,58,,"CCGT D1_Integrated Programme Schedule;M&E;Construction;M&E Construction;Switchgear;Switchgear;(10BT) DC-Switchgear 10BU",3,1,0.0000018425,0.0054933876,0.0008138352,16,0.0,0.0001393726,0.0205479452,0.0030769231,0.00278125,0.0140992167,0.0025740026,0.0358744395,0.0,0.0238202368
1.3.1.1.6.1.1-6,10BT70,"Hi Pot Testing",7112,"CCGTD1_IPS",TT_Task,"58467",-,-,-,100,TK_Complete,12/06/2019,23/05/2019,15/06/2019,25/07/2019,"10BT60 FS","10BT60","TOP1520 FS,TOP2470 FS,TOP2550 FS,TOP2920 FS","TOP1520,TOP2470,TOP2550,TOP2920",202,235,202,244,47,55,47,57,62,,"CCGT D1_Integrated Programme Schedule;M&E;Construction;M&E Construction;Switchgear;Switchgear;(10BT) DC-Switchgear 10BU",1,4,0.0000223581,0.0048830112,0.0073245168,3,0.0,0.0005616331,0.0068493151,0.0123076923,0.03375,0.0125326371,0.0231660232,0.0067264574,0.0,0.196840692
1.3.1.1.6.1.1-7,10BT50,"Distribution Panel",7112,"CCGTD1_IPS",TT_Task,"58467",-,-,-,100,TK_Complete,31/05/2019,21/05/2019,04/06/2019,24/05/2019,"10BT40 FS,10BT30 FS","10BT40,10BT30","10BT60 FS","10BT60",200,235,200,236,46,54,46,55,60,,"CCGT D1_Integrated Programme Schedule;M&E;Construction;M&E Construction;Switchgear;Switchgear;(10BT) DC-Switchgear 10BU",2,1,0.0000043888,0.0052899288,0.0012207528,4,1.0,0.0002807907,0.0136986301,0.0030769231,0.006625,0.0135770235,0.0038610039,0.0089686099,1.0,0.0817660464
1.3.1.1.6.1.1-8,10BT60,"Bus Torquing/Connection",7112,"CCGTD1_IPS",TT_Task,"58467",-,-,-,100,TK_Complete,05/06/2019,21/05/2019,12/06/2019,20/07/2019,"10BT50 FS,ECS19.1210 FS","10BT50,ECS19.1210","10BT70 FS","10BT70",201,235,202,244,46,54,47,56,61,,"CCGT D1_Integrated Programme Schedule;M&E;Construction;M&E Construction;Switchgear;Switchgear;(10BT) DC-Switchgear 10BU",2,1,0.0000228136,0.00508647,0.007121058,7,0.0,0.0005640528,0.0136986301,0.0030769231,0.0344375,0.0130548303,0.0225225225,0.0156950673,0.0,0.1978321519
1.3.1.1.6.1.2,58466,"(10AC) HV Switchgear Including Cable Connection and Lighting and Small Power",7112,"CCGTD1_IPS",WBS,"58461",,,,100,Complete,08/04/2019,10/04/2019,03/07/2019,10/08/2019,,,,,192,229,205,247,44,53,47,57,,,"CCGT D1_Integrated Programme Schedule;M&E;Construction;M&E Construction;Switchgear;Switchgear"
1.3.1.1.6.1.2-1,10AC10,"Installation of Gas Insulated Line - GIL",7112,"CCGTD1_IPS",TT_Task,"58466",-,-,-,100,TK_Complete,08/04/2019,10/04/2019,03/05/2019,20/05/2019,"SI0ACA4-25 FS,KD_D02 FF,SI0ACA4-45 FS,SUB-EIC-180 FS,KD_D09 FS,KD_D02 FS","SI0ACA4-25,KD_D02,SI0ACA4-45,SUB-EIC-180,KD_D09,KD_D02","10AC20 FS,10AC70 FS,TOP2680 FS","10AC20,10AC70,TOP2680",192,229,196,235,44,53,45,54,53,,"CCGT D1_Integrated Programme Schedule;M&E;Construction;M&E Construction;Switchgear;Switchgear;(10AC) HV Switchgear Including Cable Connection and Lighting and Small Power",5,3,0.0000173172,0.0120040692,0.0056968464,25,0.0,0.0002474774,0.0342465753,0.0092307692,0.026140625,0.0308093995,0.018018018,0.0560538117,0.0,0.0681159771
1.3.1.1.6.1.2-2,10AC20,"Cable Raceway",7112,"CCGTD1_IPS",TT_Task,"58466",-,-,-,100,TK_Complete,21/05/2019,14/05/2019,24/05/2019,20/06/2019,"SI-BZP4-27 FS,10AC10 FS","SI-BZP4-27,10AC10","10AC30 FS","10AC30",198,234,199,239,46,54,46,55,59,,"CCGT D1_Integrated Programme Schedule;M&E;Construction;M&E Construction;Switchgear;Switchgear;(10AC) HV Switchgear Including Cable Connection and Lighting and Small Power",2,1,0.0000072457,0.0038657172,0.006103764,3,0.0,0.0001341861,0.0136986301,0.0030769231,0.0109375,0.009921671,0.0193050193,0.0067264574,0.0,0.0216950927
1.3.1.1.6.1.2-3,10AC30,"Protection Panel",7112,"CCGTD1_IPS",TT_Task,"58466",-,-,-,100,TK_Complete,18/06/2019,17/05/2019,22/06/2019,24/05/2019,"10AC20 FS","10AC20","10AC40 FS","10AC40",202,235,203,236,47,54,47,55,63,,"CCGT D1_Integrated Programme Schedule;M&E;Construction;M&E Construction;Switchgear;Switchgear;(10AC) HV Switchgear Including Cable Connection and Lighting and Small Power",1,1,0.0000067488,0.0036622584,0.0063072228,4,1.0,0.0001954857,0.0068493151,0.0030769231,0.0101875,0.0093994778,0.0199485199,0.0089686099,1.0,0.0468124791
1.3.1.1.6.1.2-4,10AC40,"UPS/DC Cable Pulling",7112,"CCGTD1_IPS",TT_Task,"58466",-,-,-,100,TK_Complete,22/06/2019,22/05/2019,27/06/2019,31/07/2019,"10AC30 FS,SI-BZK4-52 FS,SI-BZK4-25 FS","10AC30,SI-BZK4-52,SI-BZK4-25","10AC50 FS","10AC50",203,235,204,245,47,55,47,57,64,,"CCGT D1_Integrated Programme Schedule;M&E;Construction;M&E Construction;Switchgear;Switchgear;(10AC) HV Switchgear Including Cable Connection and Lighting and Small Power",3,1,0.0000067074,0.0034587996,0.0069175992,5,0.0,0.0002485565,0.0205479452,0.0030769231,0.010125,0.0088772846,0.0218790219,0.0112107623,0.0,0.0685581548
1.3.1.1.6.1.2-5,10AC50,"Bus Torquing",7112,"CCGTD1_IPS",TT_Task,"58466",-,-,-,100,TK_Complete,27/06/2019,23/05/2019,03/07/2019,03/08/2019,"10AC40 FS","10AC40","10AC60 FS","10AC60",204,235,205,246,47,55,47,57,64,,"CCGT D1_Integrated Programme Schedule;M&E;Construction;M&E Construction;Switchgear;Switchgear;(10AC) HV Switchgear Including Cable Connection and Lighting and Small Power",1,1,0.0000059622,0.0032553408,0.007121058,6,0.0,0.0002929115,0.0068493151,0.0030769231,0.009,0.0083550914,0.0225225225,0.0134529148,0.0,0.0867325241
1.3.1.1.6.1.2-6,10AC60,"Hi Pot Testing",7112,"CCGTD1_IPS",TT_Task,"58466",-,-,-,100,TK_Complete,27/06/2019,27/06/2019,03/07/2019,02/08/2019,"10AC50 FS","10AC50","TOP2360 FS,TOP2600 FS","TOP2360,TOP2600",204,240,205,246,47,56,47,57,64,,"CCGT D1_Integrated Programme Schedule;M&E;Construction;M&E Construction;Switchgear;Switchgear;(10AC) HV Switchgear Including Cable Connection and Lighting and Small Power",1,2,0.0000051341,0.003051882,0.0073245168,6,0.0,0.0003306736,0.0068493151,0.0061538462,0.00775,0.0078328982,0.0231660232,0.0134529148,0.0,0.1022054817
1.3.1.1.6.1.2-7,10AC70,"Connection of HV Cable to 400Kv Building",7112,"CCGTD1_IPS",TT_Task,"58466",-,-,-,100,TK_Complete,20/06/2019,20/06/2019,29/06/2019,10/08/2019,"10AC10 FS","10AC10","10BFT100 FF","10BFT100",203,239,204,247,47,55,47,57,64,,"CCGT D1_Integrated Programme Schedule;M&E;Construction;M&E Construction;Switchgear;Switchgear;(10AC) HV Switchgear Including Cable Connection and Lighting and Small Power",1,1,0.0000090778,0.01017294,0.0059003052,9,0.0,0.0002392005,0.0068493151,0.0030769231,0.013703125,0.0261096606,0.0186615187,0.0201793722,0.0,0.0647245532
1.3.1.1.6.1.3,58465,"(10BBA) MV Switchgear 10BBA",7112,"CCGTD1_IPS",WBS,"58461",,,,100,Complete,01/03/2018,22/02/2018,09/09/2019,20/08/2019,,,,,135,170,214,248,31,39,50,58,,,"CCGT D1_Integrated Programme Schedule;M&E;Construction;M&E Construction;Switchgear;Switchgear"
1.3.1.1.6.1.3-1,10BBE10,"Switchgear Cubicles Installation/ Bolting",7112,"CCGTD1_IPS",TT_Task,"58465",-,-,-,100,TK_Complete,01/04/2019,10/03/2019,26/04/2019,02/05/2019,"KD_D02 FS,SI1BBA4-10 FS,SUB-EIC-180 FS","KD_D02,SI1BBA4-10,SUB-EIC-180","10BBE20 FS,10BBE30 FS","10BBE20,10BBE30",191,225,195,232,44,52,45,54,50,,"CCGT D1_Integrated Programme Schedule;M&E;Construction;M&E Construction;Switchgear;Switchgear;(10BBA) MV Switchgear 10BBA",3,2,0.0000265813,0.0083418108,0.0052899288,25,0.0,0.0001532635,0.0205479452,0.0061538462,0.040125,0.0214099217,0.0167310167,0.0560538117,0.0,0.0295120064
1.3.1.1.6.1.3-2,10BBE20,"Cable Raceway",7112,"CCGTD1_IPS",TT_Task,"58465",-,-,-,100,TK_Complete,01/04/2019,01/03/2019,18/04/2019,14/05/2019,"SI-BZP4-27 FS,10BBE10 FS,KD_E02 FS","SI-BZP4-27,10BBE10,KD_E02","10BBE40 FS","10BBE40",191,224,194,234,44,52,45,54,50,,"CCGT D1_Integrated Programme Schedule;M&E;Construction;M&E Construction;Switchgear;Switchgear;(10BBA) MV Switchgear 10BBA",3,1,0.0000152366,0.0079348932,0.0059003052,17,0.0,0.0001529825,0.0205479452,0.0030769231,0.023,0.0203655352,0.0186615187,0.0381165919,0.0,0.029396899
1.3.1.1.6.1.3-3,10BBE30,"Protection Panel",7112,"CCGTD1_IPS",TT_Task,"58465",-,-,-,100,TK_Complete,15/04/2019,15/04/2019,02/05/2019,09/05/2019,"10BBE10 FS","10BBE10","10BBE40 FS","10BBE40",193,230,196,233,45,53,45,54,54,,"CCGT D1_Integrated Programme Schedule;M&E;Construction;M&E Construction;Switchgear;Switchgear;(10BBA) MV Switchgear 10BBA",1,1,0.0000130422,0.0079348932,0.0054933876,17,0.4,0.0001464615,0.0068493151,0.0030769231,0.0196875,0.0203655352,0.0173745174,0.0381165919,0.4,0.0267249168
1.3.1.1.6.1.3-4,10BBE40,"UPS/DC Cable Pulling",7112,"CCGTD1_IPS",TT_Task,"58465",-,-,-,100,TK_Complete,13/04/2019,13/04/2019,03/05/2019,27/07/2019,"10BBE30 FS,SI-BZK4-52 FS,SI-BZK4-25 FS,10BBE20 FS","10BBE30,SI-BZK4-52,SI-BZK4-25,10BBE20","10BBE50 FS","10BBE50",193,230,196,245,45,53,45,57,54,,"CCGT D1_Integrated Programme Schedule;M&E;Construction;M&E Construction;Switchgear;Switchgear;(10BBA) MV Switchgear 10BBA",4,1,0.0000330155,0.0077314344,0.0067141404,20,0.0,0.0003396738,0.0273972603,0.0030769231,0.0498375,0.019843342,0.0212355212,0.0448430493,0.0,0.1058932889
1.3.1.1.6.1.3-5,10BBE50,"Bus Torquing",7112,"CCGTD1_IPS",TT_Task,"58465",-,-,-,100,TK_Complete,29/04/2019,29/04/2019,08/05/2019,20/05/2019,"10BBE40 FS","10BBE40","10BBE60 FS","10BBE60",195,232,197,235,45,54,45,54,55,,"CCGT D1_Integrated Programme Schedule;M&E;Construction;M&E Construction;Switchgear;Switchgear;(10BBA) MV Switchgear 10BBA",1,1,0.0000331811,0.0075279756,0.0069175992,9,0.0,0.0003704607,0.0068493151,0.0030769231,0.0500875,0.0193211488,0.0218790219,0.0201793722,0.0,0.1185081397
1.3.1.1.6.1.3-6,10BBE60,"Hi Pot Testing",7112,"CCGTD1_IPS",TT_Task,"58465",-,-,-,100,TK_Complete,18/06/2019,04/06/2019,03/07/2019,13/07/2019,"10BBE50 FS","10BBE50","TOP1490 FS,SC1200 FS,SC1350 FS,10BBE90 FS,SC1230 FS,SC1240 FS","TOP1490,SC1200,SC1350,10BBE90,SC1230,SC1240",202,237,205,243,47,55,47,56,63,,"CCGT D1_Integrated Programme Schedule;M&E;Construction;M&E Construction;Switchgear;Switchgear;(10BBA) MV Switchgear 10BBA",1,6,0.0000332639,0.0073245168,0.007121058,15,0.0,0.0003968204,0.0068493151,0.0184615385,0.0502125,0.0187989556,0.0225225225,0.033632287,0.0,0.1293089976
1.3.1.1.6.1.3-7,10BBE70,"Install & Test 6.6kV Switchgear Panel x 2",7112,"CCGTD1_IPS",TT_Task,"58465",-,-,-,100,TK_Complete,01/03/2018,22/02/2018,06/03/2018,26/02/2018,"A1010 FS","A1010","","",135,170,135,171,31,39,31,40,21,,"CCGT D1_Integrated Programme Schedule;M&E;Construction;M&E Construction;Switchgear;Switchgear;(10BBA) MV Switchgear 10BBA",1,0,0.0,0.0,0.0002034588,5,1.0,0.000081479,0.0068493151,0.0,0.0,0.0,0.0006435006,0.0112107623,1.0,0.0000984606
1.3.1.1.6.1.3-8,10BBE80,"Ready for Energization from Temp. Feed",7112,"CCGTD1_IPS",TT_FinMile,"58465",-,-,-,100,TK_Complete,09/09/2019,17/08/2019,09/09/2019,17/08/2019,"10BBE90 FS","10BBE90","SC1270 FS","SC1270",214,248,214,248,50,57,50,57,76,,"CCGT D1_Integrated Programme Schedule;M&E;Construction;M&E Construction;Switchgear;Switchgear;(10BBA) MV Switchgear 10BBA",1,1,0.0000000414,0.0002034588,0.0075279756,0,1.0,0.0000812387,0.0068493151,0.0030769231,0.0000625,0.0005221932,0.0238095238,0.0,1.0,0.0
1.3.1.1.6.1.3-9,10BBE90,"Pull Temp. MV Cable from Existing Station MV",7112,"CCGTD1_IPS",TT_Task,"58465",-,-,-,100,TK_Complete,31/07/2019,03/06/2019,20/08/2019,20/08/2019,"10BBE60 FS","10BBE60","10BBE80 FS","10BBE80",209,237,211,248,48,55,49,58,67,,"CCGT D1_Integrated Programme Schedule;M&E;Construction;M&E Construction;Switchgear;Switchgear;(10BBA) MV Switchgear 10BBA",1,1,0.0000014905,0.0004069176,0.0073245168,20,0.0,0.0004192562,0.0068493151,0.0030769231,0.00225,0.0010443864,0.0231660232,0.0448430493,0.0,0.1385020039
1.3.1.1.6.1.4,58464,"(10BF) LV Switchgear 10BFE/10BMA",7112,"CCGTD1_IPS",WBS,"58461",,,,100,Complete,02/04/2019,01/03/2019,24/05/2019,25/05/2019,,,,,191,224,199,236,44,52,46,55,,,"CCGT D1_Integrated Programme Schedule;M&E;Construction;M&E Construction;Switchgear;Switchgear"
1.3.1.1.6.1.4-1,10BF10,"Switchgear Cubicles Installation/ Bolting",7112,"CCGTD1_IPS",TT_Task,"58464",-,-,-,100,TK_Complete,02/04/2019,10/03/2019,24/05/2019,03/05/2019,"KD_D02 FS,SUB-EIC-180 FS,ECS18.1130 FS","KD_D02,SUB-EIC-180,ECS18.1130","10BF20 FS","10BF20",191,225,199,233,44,52,46,54,52,,"CCGT D1_Integrated Programme Schedule;M&E;Construction;M&E Construction;Switchgear;Switchgear;(10BF) LV Switchgear 10BFE/10BMA",3,1,0.0000156507,0.0054933876,0.0052899288,52,0.6,0.0001305565,0.0205479452,0.0030769231,0.023625,0.0140992167,0.0167310167,0.1165919283,0.6,0.020207875
1.3.1.1.6.1.4-2,10BF20,"Cable Raceway",7112,"CCGTD1_IPS",TT_Task,"58464",-,-,-,100,TK_Complete,02/04/2019,01/03/2019,06/04/2019,17/04/2019,"SI-BZP4-27 FS,10BF10 FS","SI-BZP4-27,10BF10","10BF30 FS","10BF30",191,224,192,230,44,52,44,53,52,,"CCGT D1_Integrated Programme Schedule;M&E;Construction;M&E Construction;Switchgear;Switchgear;(10BF) LV Switchgear 10BFE/10BMA",2,1,0.0000163131,0.0052899288,0.0056968464,4,0.0,0.0001927534,0.0136986301,0.0030769231,0.024625,0.0135770235,0.018018018,0.0089686099,0.0,0.0456929308
1.3.1.1.6.1.4-3,10BF30,"Protection Panel",7112,"CCGTD1_IPS",TT_Task,"58464",-,-,-,100,TK_Complete,16/04/2019,16/04/2019,20/04/2019,04/05/2019,"10BF20 FS","10BF20","10BF40 FS","10BF40",193,230,194,233,45,53,45,54,54,,"CCGT D1_Integrated Programme Schedule;M&E;Construction;M&E Construction;Switchgear;Switchgear;(10BF) LV Switchgear 10BFE/10BMA",1,1,0.0000161889,0.00508647,0.0059003052,4,0.0,0.0002453294,0.0068493151,0.0030769231,0.0244375,0.0130548303,0.0186615187,0.0089686099,0.0,0.0672358276
1.3.1.1.6.1.4-4,10BF40,"UPS/DC Cable Pulling",7112,"CCGTD1_IPS",TT_Task,"58464",-,-,-,100,TK_Complete,04/05/2019,04/05/2019,09/05/2019,17/05/2019,"SI-BZK4-25 FS,10BF30 FS,SI-BZK4-52 FS","SI-BZK4-25,10BF30,SI-BZK4-52","10BF50 FS","10BF50",196,233,197,235,45,54,46,54,57,,"CCGT D1_Integrated Programme Schedule;M&E;Construction;M&E Construction;Switchgear;Switchgear;(10BF) LV Switchgear 10BFE/10BMA",3,1,0.0000175139,0.0048830112,0.0065106816,5,0.4,0.0002910238,0.0205479452,0.0030769231,0.0264375,0.0125326371,0.0205920206,0.0112107623,0.4,0.0859590276
1.3.1.1.6.1.4-5,10BF60,"Bus Torquing/Connection",7112,"CCGTD1_IPS",TT_Task,"58464",-,-,-,100,TK_Complete,14/05/2019,14/05/2019,18/05/2019,18/05/2019,"10BF50 FS","10BF50","10BF70 FS","10BF70",197,234,198,235,46,54,46,54,58,,"CCGT D1_Integrated Programme Schedule;M&E;Construction;M&E Construction;Switchgear;Switchgear;(10BF) LV Switchgear 10BFE/10BMA",1,1,0.0000166858,0.0044760936,0.0069175992,4,1.0,0.0003615591,0.0068493151,0.0030769231,0.0251875,0.0114882507,0.0218790219,0.0089686099,1.0,0.1148607598
1.3.1.1.6.1.4-6,10BF70,"Hi Pot Testing",7112,"CCGTD1_IPS",TT_Task,"58464",-,-,-,100,TK_Complete,18/05/2019,18/05/2019,23/05/2019,25/05/2019,"10BF60 FS","10BF60","TOP1500 FS,TOP2670 FS","TOP1500,TOP2670",198,235,199,236,46,54,46,55,59,,"CCGT D1_Integrated Programme Schedule;M&E;Construction;M&E Construction;Switchgear;Switchgear;(10BF) LV Switchgear 10BFE/10BMA",1,2,0.0000161475,0.0042726348,0.007121058,5,1.0,0.0003891536,0.0068493151,0.0061538462,0.024375,0.0109660574,0.0225225225,0.0112107623,1.0,0.1261675453
1.3.1.1.6.1.4-7,10BF50,"Distribution Panel",7112,"CCGTD1_IPS",TT_Task,"58464",-,-,-,100,TK_Complete,09/05/2019,09/05/2019,14/05/2019,14/05/2019,"10BF40 FS","10BF40","10BF60 FS","10BF60",197,233,197,234,46,54,46,54,58,,"CCGT D1_Integrated Programme Schedule;M&E;Construction;M&E Construction;Switchgear;Switchgear;(10BF) LV Switchgear 10BFE/10BMA",1,1,0.0000171412,0.0046795524,0.0067141404,5,1.0,0.0003291236,0.0068493151,0.0030769231,0.025875,0.0120104439,0.0212355212,0.0112107623,1.0,0.1015703668
1.3.1.1.6.1.5,58463,"(00BHV) LV Switchgear Common Area",7112,"CCGTD1_IPS",WBS,"58461",,,,100,Complete,27/02/2019,11/02/2019,26/07/2019,24/08/2019,,,,,187,221,208,249,43,51,48,58,,,"CCGT D1_Integrated Programme Schedule;M&E;Construction;M&E Construction;Switchgear;Switchgear"
1.3.1.1.6.1.5-1,00BHV10,"Switchgear Cubicles Installation/ Bolting",7112,"CCGTD1_IPS",TT_Task,"58463",-,-,-,100,TK_Complete,08/04/2019,10/04/2019,03/05/2019,03/08/2019,"SUB-EIC-180 FS,KD_D02 FS,ECS18.1330 FS,SI-BZP4-27 FS","SUB-EIC-180,KD_D02,ECS18.1330,SI-BZP4-27","00BHV20 FF","00BHV20",192,229,196,246,44,53,45,57,53,,"CCGT D1_Integrated Programme Schedule;M&E;Construction;M&E Construction;Switchgear;Switchgear;(00BHV) LV Switchgear Common Area",4,1,0.0000154437,0.00508647,0.0054933876,25,0.0,0.0001141088,0.0273972603,0.0030769231,0.0233125,0.0130548303,0.0173745174,0.0560538117,0.0,0.0134684341
1.3.1.1.6.1.5-2,00BHV20,"Cable Raceway",7112,"CCGTD1_IPS",TT_Task,"58463",-,-,-,100,TK_Complete,27/02/2019,11/02/2019,21/03/2019,27/04/2019,"00BHV10 FF","00BHV10","00BHV30 FS","00BHV30",187,221,190,232,43,51,44,54,48,,"CCGT D1_Integrated Programme Schedule;M&E;Construction;M&E Construction;Switchgear;Switchgear;(00BHV) LV Switchgear Common Area",1,1,0.0000153194,0.0048830112,0.0056968464,22,0.0,0.0001783662,0.0068493151,0.0030769231,0.023125,0.0125326371,0.018018018,0.0493273543,0.0,0.0397978005
1.3.1.1.6.1.5-3,00BHV30,"Protection Panel",7112,"CCGTD1_IPS",TT_Task,"58463",-,-,-,100,TK_Complete,11/05/2019,11/05/2019,15/05/2019,03/08/2019,"00BHV20 FS","00BHV20","00BHV40 FS","00BHV40",197,234,198,246,46,54,46,57,58,,"CCGT D1_Integrated Programme Schedule;M&E;Construction;M&E Construction;Switchgear;Switchgear;(00BHV) LV Switchgear Common Area",1,1,0.0000151124,0.0046795524,0.0059003052,4,0.0,0.0002330729,0.0068493151,0.0030769231,0.0228125,0.0120104439,0.0186615187,0.0089686099,0.0,0.0622137817
1.3.1.1.6.1.5-4,00BHV40,"UPS/DC Cable Pulling",7112,"CCGTD1_IPS",TT_Task,"58463",-,-,-,100,TK_Complete,16/05/2019,16/05/2019,01/06/2019,24/08/2019,"SI-BZK4-25 FS,SI-BZK4-52 FS,00BHV30 FS","SI-BZK4-25,SI-BZK4-52,00BHV30","00BHV50 FS","00BHV50",198,234,200,249,46,54,46,58,59,,"CCGT D1_Integrated Programme Schedule;M&E;Construction;M&E Construction;Switchgear;Switchgear;(00BHV) LV Switchgear Common Area",3,1,0.0000162303,0.0044760936,0.0065106816,16,0.0,0.0002825044,0.0205479452,0.0030769231,0.0245,0.0114882507,0.0205920206,0.0358744395,0.0,0.0824682187
1.3.1.1.6.1.5-5,00BHV60,"Bus Torquing/Connection",7112,"CCGTD1_IPS",TT_Task,"58463",-,-,-,100,TK_Complete,06/06/2019,17/05/2019,11/06/2019,17/08/2019,"00BHV50 FS","00BHV50","00BHV70 FS","00BHV70",201,235,201,248,46,54,47,57,62,,"CCGT D1_Integrated Programme Schedule;M&E;Construction;M&E Construction;Switchgear;Switchgear;(00BHV) LV Switchgear Common Area",1,1,0.0000152366,0.004069176,0.0069175992,5,0.0,0.0003553757,0.0068493151,0.0030769231,0.023,0.0104438642,0.0218790219,0.0112107623,0.0,0.1123271146
1.3.1.1.6.1.5-6,00BHV70,"Hi Pot Testing",7112,"CCGTD1_IPS",TT_Task,"58463",-,-,-,100,TK_Complete,22/07/2019,15/06/2019,26/07/2019,03/08/2019,"00BHV60 FS","00BHV60","TOP2480 FS,TOP2490 FS,SC1240 FS,SC1230 FS,SC1210 FS","TOP2480,TOP2490,SC1240,SC1230,SC1210",207,239,208,246,48,55,48,57,66,,"CCGT D1_Integrated Programme Schedule;M&E;Construction;M&E Construction;Switchgear;Switchgear;(00BHV) LV Switchgear Common Area",1,5,0.0000146156,0.0038657172,0.007121058,4,0.0,0.0003838947,0.0068493151,0.0153846154,0.0220625,0.009921671,0.0225225225,0.0089686099,0.0,0.1240126987
1.3.1.1.6.1.5-7,00BHV50,"Distribution Panel",7112,"CCGTD1_IPS",TT_Task,"58463",-,-,-,100,TK_Complete,03/06/2019,12/05/2019,06/06/2019,10/08/2019,"00BHV40 FS","00BHV40","00BHV60 FS","00BHV60",200,234,201,247,46,54,46,57,61,,"CCGT D1_Integrated Programme Schedule;M&E;Construction;M&E Construction;Switchgear;Switchgear;(00BHV) LV Switchgear Common Area",1,1,0.0000157749,0.0042726348,0.0067141404,3,0.0,0.0003218503,0.0068493151,0.0030769231,0.0238125,0.0109660574,0.0212355212,0.0067264574,0.0,0.098590119
1.3.1.1.6.1.6,58462,"(10BH) LV Switchgear Boiler",7112,"CCGTD1_IPS",WBS,"58461",,,,100,Complete,02/04/2019,01/03/2019,31/07/2019,24/08/2019,,,,,191,224,209,249,44,52,48,58,,,"CCGT D1_Integrated Programme Schedule;M&E;Construction;M&E Construction;Switchgear;Switchgear"
1.3.1.1.6.1.6-1,10BH10,"Switchgear Cubicles Installation/ Bolting",7112,"CCGTD1_IPS",TT_Task,"58462",-,-,-,100,TK_Complete,08/04/2019,10/04/2019,16/05/2019,09/05/2019,"ECS18.1330 FS,SUB-EIC-180 FS,KD_D02 FS","ECS18.1330,SUB-EIC-180,KD_D02","10BH20 FS","10BH20",192,229,198,233,44,53,46,54,53,,"CCGT D1_Integrated Programme Schedule;M&E;Construction;M&E Construction;Switchgear;Switchgear;(10BH) LV Switchgear Boiler",3,1,0.0000063762,0.0028484232,0.0052899288,38,1.0,0.0001274841,0.0205479452,0.0030769231,0.009625,0.007310705,0.0167310167,0.0852017937,1.0,0.0189489586
1.3.1.1.6.1.6-2,10BH20,"Cable Raceway",7112,"CCGTD1_IPS",TT_Task,"58462",-,-,-,100,TK_Complete,02/04/2019,01/03/2019,16/04/2019,30/04/2019,"SI-BZP4-27 FS,10BH10 FS","SI-BZP4-27,10BH10","10BH30 FS","10BH30",191,224,193,232,44,52,45,54,52,,"CCGT D1_Integrated Programme Schedule;M&E;Construction;M&E Construction;Switchgear;Switchgear;(10BH) LV Switchgear Boiler",2,1,0.0000061278,0.0026449644,0.0056968464,14,0.0,0.0001911173,0.0136986301,0.0030769231,0.00925,0.0067885117,0.018018018,0.0313901345,0.0,0.0450225367
1.3.1.1.6.1.6-3,10BH30,"Protection Panel",7112,"CCGTD1_IPS",TT_Task,"58462",-,-,-,100,TK_Complete,09/05/2019,09/05/2019,24/05/2019,24/05/2019,"10BH20 FS","10BH20","10BH40 FS","10BH40",197,233,199,236,46,54,46,55,58,,"CCGT D1_Integrated Programme Schedule;M&E;Construction;M&E Construction;Switchgear;Switchgear;(10BH) LV Switchgear Boiler",1,1,0.0000054653,0.0024415056,0.0059003052,15,1.0,0.0002439346,0.0068493151,0.0030769231,0.00825,0.0062663185,0.0186615187,0.033632287,1.0,0.0666643398
1.3.1.1.6.1.6-4,10BH40,"UPS/DC Cable Pulling",7112,"CCGTD1_IPS",TT_Task,"58462",-,-,-,100,TK_Complete,24/05/2019,20/05/2019,10/06/2019,26/07/2019,"SI-BZK4-52 FS,SI-BZK4-25 FS,10BH30 FS","SI-BZK4-52,SI-BZK4-25,10BH30","10BH41 FS","10BH41",199,235,201,245,46,54,47,57,59,,"CCGT D1_Integrated Programme Schedule;M&E;Construction;M&E Construction;Switchgear;Switchgear;(10BH) LV Switchgear Boiler",3,1,0.0000051341,0.0022380468,0.0065106816,17,0.0,0.0002919402,0.0205479452,0.0030769231,0.00775,0.0057441253,0.0205920206,0.0381165919,0.0,0.0863345382
1.3.1.1.6.1.6-5,10BH60,"Hi Pot Testing",7112,"CCGTD1_IPS",TT_Task,"58462",-,-,-,100,TK_Complete,16/07/2019,16/07/2019,31/07/2019,24/08/2019,"10BH50 FS","10BH50","SC1230 FS,SC1240 FS","SC1230,SC1240",206,243,209,249,48,56,48,58,66,,"CCGT D1_Integrated Programme Schedule;M&E;Construction;M&E Construction;Switchgear;Switchgear;(10BH) LV Switchgear Boiler",1,2,0.000002153,0.0016276704,0.007121058,15,0.0,0.0003897219,0.0068493151,0.0061538462,0.00325,0.0041775457,0.0225225225,0.033632287,0.0,0.1264004133
1.3.1.1.6.1.6-6,10BH41,"Distribution Panel",7112,"CCGTD1_IPS",TT_Task,"58462",-,-,-,100,TK_Complete,10/06/2019,14/05/2019,25/06/2019,16/05/2019,"10BH40 FS","10BH40","10BH50 FS","10BH50",201,234,203,234,47,54,47,54,62,,"CCGT D1_Integrated Programme Schedule;M&E;Construction;M&E Construction;Switchgear;Switchgear;(10BH) LV Switchgear Boiler",1,1,0.0000042232,0.002034588,0.0067141404,15,1.0,0.0003299001,0.0068493151,0.0030769231,0.006375,0.0052219321,0.0212355212,0.033632287,1.0,0.1018885135
1.3.1.1.6.1.6-7,10BH50,"Bus Torquing/Connection",7112,"CCGTD1_IPS",TT_Task,"58462",-,-,-,100,TK_Complete,25/06/2019,20/05/2019,09/07/2019,10/08/2019,"10BH41 FS","10BH41","10BH60 FS","10BH60",203,235,205,247,47,54,48,57,64,,"CCGT D1_Integrated Programme Schedule;M&E;Construction;M&E Construction;Switchgear;Switchgear;(10BH) LV Switchgear Boiler",1,1,0.0000032295,0.0018311292,0.0069175992,14,0.0,0.0003622239,0.0068493151,0.0030769231,0.004875,0.0046997389,0.0218790219,0.0313901345,0.0,0.1151331501
1.3.1.1.7,58448,"Transformer",7112,"CCGTD1_IPS",WBS,"58325",,,,100,Complete,21/02/2019,06/02/2019,12/11/2019,12/11/2019,,,,,186,220,223,260,43,51,52,60,,,"CCGT D1_Integrated Programme Schedule;M&E;Construction;M&E Construction"
1.3.1.1.7.1,58449,"Transformers (B)",7112,"CCGTD1_IPS",WBS,"58448",,,,100,Complete,21/02/2019,06/02/2019,12/11/2019,12/11/2019,,,,,186,220,223,260,43,51,52,60,,,"CCGT D1_Integrated Programme Schedule;M&E;Construction;M&E Construction;Transformer"
1.3.1.1.7.1.1,58459,"(10MKB) Static Start-up Panel & Switchgear",7112,"CCGTD1_IPS",WBS,"58449",,,,100,Complete,15/04/2019,11/03/2019,10/08/2019,08/10/2019,,,,,193,225,210,255,45,52,49,59,,,"CCGT D1_Integrated Programme Schedule;M&E;Construction;M&E Construction;Transformer;Transformers (B)"
1.3.1.1.7.1.1-1,10MKB250,"Precommissioning",7112,"CCGTD1_IPS",TT_Task,"58459",-,-,-,100,TK_Complete,06/08/2019,06/08/2019,10/08/2019,08/10/2019,"10MKB240 FS","10MKB240","TOP1530 FS","TOP1530",209,246,210,255,48,57,49,59,69,,"CCGT D1_Integrated Programme Schedule;M&E;Construction;M&E Construction;Transformer;Transformers (B);(10MKB) Static Start-up Panel & Switchgear",1,1,0.0000043474,0.0042726348,0.0093591048,4,0.0,0.0003741561,0.0068493151,0.0030769231,0.0065625,0.0109660574,0.0296010296,0.0089686099,0.0,0.1200223415
1.3.1.1.7.1.1-2,10MKB200,"Set Static Start-up Panel & Switichgear, Align & Bolt",7112,"CCGTD1_IPS",TT_Task,"58459",-,-,-,100,TK_Complete,15/04/2019,27/03/2019,25/04/2019,23/07/2019,"KD_C04 FS,KD_D02 FS,SUB-EIC-180 FS,SI1CJT4-25 FS,10MKB30 FS","KD_C04,KD_D02,SUB-EIC-180,SI1CJT4-25,10MKB30","10MKB210 FS","10MKB210",193,227,195,244,45,53,45,57,54,,"CCGT D1_Integrated Programme Schedule;M&E;Construction;M&E Construction;Transformer;Transformers (B);(10MKB) Static Start-up Panel & Switchgear",5,1,0.0000084878,0.0052899288,0.0083418108,10,0.0,0.0001604935,0.0342465753,0.0030769231,0.0128125,0.0135770235,0.0263835264,0.0224215247,0.0,0.0324745112
1.3.1.1.7.1.1-3,10MKB210,"Install  Relays",7112,"CCGTD1_IPS",TT_Task,"58459",-,-,-,100,TK_Complete,17/06/2019,14/05/2019,24/06/2019,26/07/2019,"10MKB200 FS","10MKB200","10MKB220 FS","10MKB220",202,234,203,245,47,54,47,57,63,,"CCGT D1_Integrated Programme Schedule;M&E;Construction;M&E Construction;Transformer;Transformers (B);(10MKB) Static Start-up Panel & Switchgear",1,1,0.0000078253,0.00508647,0.0085452696,7,0.0,0.0002178584,0.0068493151,0.0030769231,0.0118125,0.0130548303,0.027027027,0.0156950673,0.0,0.0559796576
1.3.1.1.7.1.1-4,10MKB220,"Install Cable Tray",7112,"CCGTD1_IPS",TT_Task,"58459",-,-,-,100,TK_Complete,03/05/2019,11/03/2019,25/05/2019,08/05/2019,"10MKB210 FS","10MKB210","10MKB230 FS","10MKB230",196,225,199,233,45,52,46,54,57,,"CCGT D1_Integrated Programme Schedule;M&E;Construction;M&E Construction;Transformer;Transformers (B);(10MKB) Static Start-up Panel & Switchgear",1,1,0.0000070801,0.0048830112,0.0087487284,22,0.0,0.0002667306,0.0068493151,0.0030769231,0.0106875,0.0125326371,0.0276705277,0.0493273543,0.0,0.0760049333
1.3.1.1.7.1.1-5,10MKB230,"Cable Puling & Terminations",7112,"CCGTD1_IPS",TT_Task,"58459",-,-,-,100,TK_Complete,25/05/2019,11/03/2019,17/06/2019,03/08/2019,"10MKB220 FS","10MKB220","10MKB240 FS","10MKB240",199,225,202,246,46,52,47,57,60,,"CCGT D1_Integrated Programme Schedule;M&E;Construction;M&E Construction;Transformer;Transformers (B);(10MKB) Static Start-up Panel & Switchgear",1,1,0.000006252,0.0046795524,0.0089521872,23,0.0,0.00030839,0.0068493151,0.0030769231,0.0094375,0.0120104439,0.0283140283,0.0515695067,0.0,0.0930748144
1.3.1.1.7.1.1-6,10MKB240,"Hi Pot",7112,"CCGTD1_IPS",TT_Task,"58459",-,-,-,100,TK_Complete,10/07/2019,17/07/2019,17/07/2019,10/08/2019,"10MKB230 FS","10MKB230","10MKB250 FS","10MKB250",206,243,207,247,48,56,48,57,66,,"CCGT D1_Integrated Programme Schedule;M&E;Construction;M&E Construction;Transformer;Transformers (B);(10MKB) Static Start-up Panel & Switchgear",1,1,0.0000053411,0.0044760936,0.009155646,7,0.0,0.0003439144,0.0068493151,0.0030769231,0.0080625,0.0114882507,0.028957529,0.0156950673,0.0,0.1076308447
1.3.1.1.7.1.2,58458,"(10MKB) Excitation Control Panel & Circuit Breaker",7112,"CCGTD1_IPS",WBS,"58449",,,,100,Complete,04/06/2019,07/05/2019,08/08/2019,10/10/2019,,,,,200,233,210,255,46,54,49,59,,,"CCGT D1_Integrated Programme Schedule;M&E;Construction;M&E Construction;Transformer;Transformers (B)"
1.3.1.1.7.1.2-1,10MKB80,"Precommissioning",7112,"CCGTD1_IPS",TT_Task,"58458",-,-,-,100,TK_Complete,03/08/2019,28/08/2019,08/08/2019,10/10/2019,"10MKB70 FS,10MKB40 FS","10MKB70,10MKB40","TOP1530 FS","TOP1530",209,249,210,255,48,58,49,59,69,,"CCGT D1_Integrated Programme Schedule;M&E;Construction;M&E Construction;Transformer;Transformers (B);(10MKB) Excitation Control Panel & Circuit Breaker",2,1,0.0000099507,0.0042726348,0.009155646,5,0.0,0.0003927533,0.0136986301,0.0030769231,0.0150208333,0.0109660574,0.028957529,0.0112107623,0.0,0.1276424912
1.3.1.1.7.1.2-2,10MKB30,"Set Excitation Control & Circuit Breaker Panels, Align & Bolt",7112,"CCGTD1_IPS",TT_Task,"58458",-,-,-,100,TK_Complete,04/06/2019,20/05/2019,12/06/2019,17/07/2019,"SI1CJT4-25 FS,SUB-EIC-180 FS,10CHA30 FS,KD_D02 FS,KD_C04 FS,10MKB90 FS","SI1CJT4-25,SUB-EIC-180,10CHA30,KD_D02,KD_C04,10MKB90","10MKB40 FS,10MKB200 FS,10MKB50 SS","10MKB40,10MKB200,10MKB50",200,235,202,243,46,54,47,56,61,,"CCGT D1_Integrated Programme Schedule;M&E;Construction;M&E Construction;Transformer;Transformers (B);(10MKB) Excitation Control Panel & Circuit Breaker",6,3,0.0000161199,0.0065106816,0.008138352,8,0.0,0.0001544249,0.0410958904,0.0092307692,0.0243333333,0.0167101828,0.0257400257,0.0179372197,0.0,0.0299878981
1.3.1.1.7.1.2-3,10MKB40,"Install  Relays",7112,"CCGTD1_IPS",TT_Task,"58458",-,-,-,100,TK_Complete,12/06/2019,21/05/2019,19/06/2019,26/07/2019,"10MKB30 FS","10MKB30","10MKB80 FS","10MKB80",202,235,203,245,47,54,47,57,62,,"CCGT D1_Integrated Programme Schedule;M&E;Construction;M&E Construction;Transformer;Transformers (B);(10MKB) Excitation Control Panel & Circuit Breaker",1,1,0.0000081704,0.0044760936,0.0083418108,7,0.0,0.0001075302,0.0068493151,0.0030769231,0.0123333333,0.0114882507,0.0263835264,0.0156950673,0.0,0.0107728818
1.3.1.1.7.1.2-4,10MKB50,"Install Cable Tray",7112,"CCGTD1_IPS",TT_Task,"58458",-,-,-,100,TK_Complete,04/06/2019,07/05/2019,22/06/2019,21/05/2019,"10MKB30 SS","10MKB30","10MKB60 FS","10MKB60",200,233,203,235,46,54,47,54,61,,"CCGT D1_Integrated Programme Schedule;M&E;Construction;M&E Construction;Transformer;Transformers (B);(10MKB) Excitation Control Panel & Circuit Breaker",1,1,0.0000033951,0.0048830112,0.0083418108,18,1.0,0.0001488454,0.0068493151,0.0030769231,0.005125,0.0125326371,0.0263835264,0.0403587444,1.0,0.0277016961
1.3.1.1.7.1.2-5,10MKB60,"Cable Puling & Terminations",7112,"CCGTD1_IPS",TT_Task,"58458",-,-,-,100,TK_Complete,22/06/2019,22/05/2019,17/07/2019,17/08/2019,"10MKB50 FS","10MKB50","10MKB70 FS","10MKB70",203,235,207,248,47,55,48,57,64,,"CCGT D1_Integrated Programme Schedule;M&E;Construction;M&E Construction;Transformer;Transformers (B);(10MKB) Excitation Control Panel & Circuit Breaker",1,1,0.0000026499,0.0046795524,0.0085452696,25,0.0,0.0002079639,0.0068493151,0.0030769231,0.004,0.0120104439,0.027027027,0.0560538117,0.0,0.0519254235
1.3.1.1.7.1.2-6,10MKB70,"Hi Pot",7112,"CCGTD1_IPS",TT_Task,"58458",-,-,-,100,TK_Complete,18/06/2019,27/06/2019,24/06/2019,20/07/2019,"10MKB60 FS","10MKB60","10MKB80 FS","10MKB80",202,240,203,244,47,56,47,56,63,,"CCGT D1_Integrated Programme Schedule;M&E;Construction;M&E Construction;Transformer;Transformers (B);(10MKB) Excitation Control Panel & Circuit Breaker",1,1,0.0000018218,0.0044760936,0.0087487284,6,0.0,0.0002583118,0.0068493151,0.0030769231,0.00275,0.0114882507,0.0276705277,0.0134529148,0.0,0.0725553397
1.3.1.1.7.1.3,58457,"(10CHA) Generator Protection 10CHA",7112,"CCGTD1_IPS",WBS,"58449",,,,100,Complete,30/04/2019,30/04/2019,12/08/2019,30/08/2019,,,,,195,232,210,250,45,54,49,58,,,"CCGT D1_Integrated Programme Schedule;M&E;Construction;M&E Construction;Transformer;Transformers (B)"
1.3.1.1.7.1.3-1,10CHA50,"Install Cable Tray",7112,"CCGTD1_IPS",TT_Task,"58457",-,-,-,100,TK_Complete,30/04/2019,30/04/2019,25/05/2019,13/05/2019,"10CHA30 SS","10CHA30","10CHA60 FS","10CHA60",195,232,199,234,45,54,46,54,56,,"CCGT D1_Integrated Programme Schedule;M&E;Construction;M&E Construction;Transformer;Transformers (B);(10CHA) Generator Protection 10CHA",1,1,0.0000033951,0.0048830112,0.0075279756,25,1.0,0.0001961727,0.0068493151,0.0030769231,0.005125,0.0125326371,0.0238095238,0.0560538117,1.0,0.0470939621
1.3.1.1.7.1.3-2,10CHA60,"Cable Pulling & Terminations",7112,"CCGTD1_IPS",TT_Task,"58457",-,-,-,100,TK_Complete,25/05/2019,15/05/2019,15/06/2019,02/08/2019,"10CHA50 FS","10CHA50","10CHA70 FS","10CHA70",199,234,202,246,46,54,47,57,60,,"CCGT D1_Integrated Programme Schedule;M&E;Construction;M&E Construction;Transformer;Transformers (B);(10CHA) Generator Protection 10CHA",1,1,0.0000028155,0.0046795524,0.0077314344,21,0.0,0.0002482701,0.0068493151,0.0030769231,0.00425,0.0120104439,0.0244530245,0.0470852018,0.0,0.0684407769
1.3.1.1.7.1.3-3,10CHA70,"Hi Pot",7112,"CCGTD1_IPS",TT_Task,"58457",-,-,-,100,TK_Complete,13/06/2019,26/06/2019,20/06/2019,03/08/2019,"10CHA60 FS","10CHA60","10CHA80 FS","10CHA80",202,240,203,246,47,56,47,57,63,,"CCGT D1_Integrated Programme Schedule;M&E;Construction;M&E Construction;Transformer;Transformers (B);(10CHA) Generator Protection 10CHA",1,1,0.000002153,0.0044760936,0.0079348932,7,0.0,0.0002926707,0.0068493151,0.0030769231,0.00325,0.0114882507,0.0250965251,0.0156950673,0.0,0.0866338664
1.3.1.1.7.1.3-4,10CHA30,"Set Generator Protection Panel, Align & Bolt",7112,"CCGTD1_IPS",TT_Task,"58457",-,-,-,100,TK_Complete,30/04/2019,30/04/2019,08/05/2019,06/05/2019,"10BA10 FS,SI1BAC4-25 FS,10MKA1140 FS,SI1CHA4-10 FS,SUB-EIC-180 FS","10BA10,SI1BAC4-25,10MKA1140,SI1CHA4-10,SUB-EIC-180","10CHA40 FS,10MKB30 FS,10CHA50 SS","10CHA40,10MKB30,10CHA50",195,232,197,233,45,54,45,54,56,,"CCGT D1_Integrated Programme Schedule;M&E;Construction;M&E Construction;Transformer;Transformers (B);(10CHA) Generator Protection 10CHA",5,3,0.0000096885,0.0077314344,0.0073245168,8,1.0,0.0002160698,0.0342465753,0.0092307692,0.014625,0.019843342,0.0231660232,0.0179372197,1.0,0.0552467913
1.3.1.1.7.1.3-5,10CHA40,"Install Generator Protection Panel Relays",7112,"CCGTD1_IPS",TT_Task,"58457",-,-,-,100,TK_Complete,04/06/2019,07/05/2019,11/06/2019,24/07/2019,"10CHA30 FS","10CHA30","","",200,233,201,244,46,54,47,57,61,,"CCGT D1_Integrated Programme Schedule;M&E;Construction;M&E Construction;Transformer;Transformers (B);(10CHA) Generator Protection 10CHA",1,0,0.0,0.0,0.0075279756,7,0.0,0.0001134202,0.0068493151,0.0,0.0,0.0,0.0238095238,0.0156950673,0.0,0.0131863094
1.3.1.1.7.1.3-6,10CHA80,"Precommissioning",7112,"CCGTD1_IPS",TT_Task,"58457",-,-,-,100,TK_Complete,02/08/2019,24/08/2019,12/08/2019,30/08/2019,"10CHA70 FS,10BAC10 FS","10CHA70,10BAC10","TOP1530 FS","TOP1530",209,249,210,250,48,58,49,58,68,,"CCGT D1_Integrated Programme Schedule;M&E;Construction;M&E Construction;Transformer;Transformers (B);(10CHA) Generator Protection 10CHA",2,1,0.0000218378,0.0042726348,0.009155646,10,1.0,0.0004436012,0.0136986301,0.0030769231,0.0329645833,0.0109660574,0.028957529,0.0224215247,1.0,0.1484773363
1.3.1.1.7.1.4,58456,"(10BA) Isolated Generator Busduct 10BAA incl. 10BAB, BAC",7112,"CCGTD1_IPS",WBS,"58449",,,,100,Complete,01/04/2019,01/04/2019,12/11/2019,12/11/2019,,,,,191,228,223,260,44,53,52,60,,,"CCGT D1_Integrated Programme Schedule;M&E;Construction;M&E Construction;Transformer;Transformers (B)"
1.3.1.1.7.1.4-1,10BA140,"IPB Connection at Main Transformer & Auxiliary Transformers after HI Voltage Test",7112,"CCGTD1_IPS",TT_Task,"58456",-,-,-,100,TK_Complete,02/09/2019,15/08/2019,04/09/2019,07/11/2019,"10BA30 FS,10BA90 FS,10BA130 FF","10BA30,10BA90,10BA130","10BA150 FS","10BA150",213,247,214,259,49,57,49,60,75,,"CCGT D1_Integrated Programme Schedule;M&E;Construction;M&E Construction;Transformer;Transformers (B);(10BA) Isolated Generator Busduct 10BAA incl. 10BAB, BAC",3,1,0.0000019874,0.0044760936,0.0028484232,2,0.0,0.0002880637,0.0205479452,0.0030769231,0.003,0.0114882507,0.009009009,0.0044843049,0.0,0.0847461428
1.3.1.1.7.1.4-2,10BA160,"Air Leakage Test",7112,"CCGTD1_IPS",TT_Task,"58456",-,-,-,100,TK_Complete,10/09/2019,21/09/2019,13/09/2019,25/09/2019,"10BA120 FS,10BA150 FS,10BA60 FS","10BA120,10BA150,10BA60","10BA170 FS","10BA170",214,253,215,253,50,59,50,59,76,,"CCGT D1_Integrated Programme Schedule;M&E;Construction;M&E Construction;Transformer;Transformers (B);(10BA) Isolated Generator Busduct 10BAA incl. 10BAB, BAC",3,1,0.000021269,0.004069176,0.0113936928,3,0.8,0.0003504593,0.0205479452,0.0030769231,0.0321059896,0.0104438642,0.036036036,0.0067264574,0.8,0.1103126023
1.3.1.1.7.1.4-3,10BA80,"Installation of Short Circuit Devise",7112,"CCGTD1_IPS",TT_Task,"58456",-,-,-,100,TK_Complete,26/06/2019,15/06/2019,03/07/2019,20/09/2019,"10BA30 FF","10BA30","10BA90 FF","10BA90",204,239,205,253,47,55,47,59,64,,"CCGT D1_Integrated Programme Schedule;M&E;Construction;M&E Construction;Transformer;Transformers (B);(10BA) Isolated Generator Busduct 10BAA incl. 10BAB, BAC",1,1,0.0,0.0056968464,0.002034588,7,0.0,0.0001052155,0.0068493151,0.0030769231,0.0,0.0146214099,0.0064350064,0.0156950673,0.0,0.0098244389
1.3.1.1.7.1.4-4,10BA120,"Installation of  Surge Arrestor",7112,"CCGTD1_IPS",TT_Task,"58456",-,-,-,100,TK_Complete,18/07/2019,06/07/2019,23/07/2019,28/08/2019,"10BA90 FS","10BA90","10BA160 FS","10BA160",207,242,207,249,48,56,48,58,66,,"CCGT D1_Integrated Programme Schedule;M&E;Construction;M&E Construction;Transformer;Transformers (B);(10BA) Isolated Generator Busduct 10BAA incl. 10BAB, BAC",1,1,0.0000009523,0.0042726348,0.0024415056,5,0.0,0.0001345734,0.0068493151,0.0030769231,0.0014375,0.0109660574,0.0077220077,0.0112107623,0.0,0.0218538002
1.3.1.1.7.1.4-5,10BA60,"Install Air Piping from Pressure Reducing Cubicle to Taps @ IPB Enclosure",7112,"CCGTD1_IPS",TT_Task,"58456",-,-,-,100,TK_Complete,14/05/2019,14/05/2019,22/05/2019,07/11/2019,"10BA50 FS","10BA50","10BA160 FS","10BA160",197,234,199,259,46,54,46,60,58,,"CCGT D1_Integrated Programme Schedule;M&E;Construction;M&E Construction;Transformer;Transformers (B);(10BA) Isolated Generator Busduct 10BAA incl. 10BAB, BAC",1,1,0.0000012192,0.0042726348,0.001017294,8,0.0,0.0001004212,0.0068493151,0.0030769231,0.0018403646,0.0109660574,0.0032175032,0.0179372197,0.0,0.0078599998
1.3.1.1.7.1.4-6,10BA70,"Install Air Piping from Pressure Reducing Cubicle to Taps @ IPB Enclosure",7112,"CCGTD1_IPS",TT_Task,"58456",-,-,-,100,TK_Complete,18/07/2019,27/07/2019,22/07/2019,07/11/2019,"10BA30 FS","10BA30","10BA170 FS","10BA170",207,245,207,259,48,57,48,60,66,,"CCGT D1_Integrated Programme Schedule;M&E;Construction;M&E Construction;Transformer;Transformers (B);(10BA) Isolated Generator Busduct 10BAA incl. 10BAB, BAC",1,1,0.0000034964,0.004069176,0.002034588,4,0.0,0.0000949397,0.0068493151,0.0030769231,0.0052778646,0.0104438642,0.0064350064,0.0089686099,0.0,0.0056139651
1.3.1.1.7.1.4-7,10BA170,"Precommissioning",7112,"CCGTD1_IPS",TT_Task,"58456",-,-,-,100,TK_Complete,09/11/2019,09/11/2019,12/11/2019,12/11/2019,"10BA70 FS,10BA160 FS","10BA70,10BA160","TOP1720 FS,TOP2590 FS,TOP2610 FS,TOP2620 FS","TOP1720,TOP2590,TOP2610,TOP2620",223,260,223,260,52,60,52,60,81,,"CCGT D1_Integrated Programme Schedule;M&E;Construction;M&E Construction;Transformer;Transformers (B);(10BA) Isolated Generator Busduct 10BAA incl. 10BAB, BAC",2,4,0.0000240201,0.0038657172,0.0118006104,3,1.0,0.0004603911,0.0136986301,0.0123076923,0.0362588542,0.009921671,0.0373230373,0.0067264574,1.0,0.155356984
1.3.1.1.7.1.4-8,10BA20,"Install Steel Structure @ Generator Area",7112,"CCGTD1_IPS",TT_Task,"58456",-,-,-,100,TK_Complete,01/04/2019,01/04/2019,23/05/2019,23/07/2019,"SI1BAA4-25 FS,KD_C27 FS,KD_C17 FS","SI1BAA4-25,KD_C27,KD_C17","10BA30 FS,10BAC10 SS","10BA30,10BAC10",191,228,199,244,44,53,46,57,50,,"CCGT D1_Integrated Programme Schedule;M&E;Construction;M&E Construction;Transformer;Transformers (B);(10BA) Isolated Generator Busduct 10BAA incl. 10BAB, BAC",3,2,0.0000042584,0.0099694812,0.0008138352,52,0.0,0.0001612225,0.0205479452,0.0061538462,0.006428125,0.0255874674,0.0025740026,0.1165919283,0.0,0.0327732088
1.3.1.1.7.1.4-9,10BA30,"Install/Align/Weld IPB",7112,"CCGTD1_IPS",TT_Task,"58456",-,-,-,100,TK_Complete,01/06/2019,16/05/2019,03/07/2019,14/09/2019,"10BA20 FS,10BA50 FS","10BA20,10BA50","10BA40 SS,10BA110 FF,10BA130 FS,10BA70 FS,10BA140 FS,10BA100 FS,10BA90 FF,10BA80 FF","10BA40,10BA110,10BA130,10BA70,10BA140,10BA100,10BA90,10BA80",200,234,205,252,46,54,47,58,61,,"CCGT D1_Integrated Programme Schedule;M&E;Construction;M&E Construction;Transformer;Transformers (B);(10BA) Isolated Generator Busduct 10BAA incl. 10BAB, BAC",2,8,0.0000057244,0.0063072228,0.0018311292,32,0.0,0.0002494476,0.0136986301,0.0246153846,0.0086411458,0.0161879896,0.0057915058,0.0717488789,0.0,0.0689232747
1.3.1.1.7.1.4-10,10BA10,"Installation of IPB Cabinet (Neut. Grd, Sec CT, Earthing, Pressure Red., H2 Purge)",7112,"CCGTD1_IPS",TT_Task,"58456",-,-,-,100,TK_Complete,13/05/2019,13/05/2019,29/05/2019,06/11/2019,"KD_C04 FS,KD_D02 FS,SUB-EIC-180 FS","KD_C04,KD_D02,SUB-EIC-180","10CHA30 FS,10BA150 FS","10CHA30,10BA150",197,234,200,259,46,54,46,60,58,,"CCGT D1_Integrated Programme Schedule;M&E;Construction;M&E Construction;Transformer;Transformers (B);(10BA) Isolated Generator Busduct 10BAA incl. 10BAB, BAC",3,2,0.0000128456,0.0103763988,0.006103764,16,0.0,0.0000864787,0.0205479452,0.0061538462,0.019390625,0.0266318538,0.0193050193,0.0358744395,0.0,0.0021470817
1.3.1.1.7.1.4-11,10BA150,"Close Inspection Cover",7112,"CCGTD1_IPS",TT_Task,"58456",-,-,-,100,TK_Complete,08/11/2019,08/11/2019,08/11/2019,08/11/2019,"10BA140 FS,10BA40 FS,10BA10 FS,10BA90 FS,10BA100 FS","10BA140,10BA40,10BA10,10BA90,10BA100","10BA160 FS","10BA160",223,260,223,260,52,60,52,60,81,,"CCGT D1_Integrated Programme Schedule;M&E;Construction;M&E Construction;Transformer;Transformers (B);(10BA) Isolated Generator Busduct 10BAA incl. 10BAB, BAC",5,1,0.0000188077,0.0042726348,0.0107833164,0,1.0,0.0000812387,0.0342465753,0.0030769231,0.028390625,0.0109660574,0.0341055341,0.0,1.0,0.0
1.3.1.1.7.1.4-12,10BA90,"Hi Potential Test",7112,"CCGTD1_IPS",TT_Task,"58456",-,-,-,100,TK_Complete,02/09/2019,02/09/2019,07/09/2019,07/09/2019,"10BA30 FF,10BA80 FF","10BA30,10BA80","10BA100 FS,10BA110 FF,10BA140 FS,10BA120 FS,10BA130 FS,10BA150 FS","10BA100,10BA110,10BA140,10BA120,10BA130,10BA150",213,250,214,251,49,58,50,58,75,,"CCGT D1_Integrated Programme Schedule;M&E;Construction;M&E Construction;Transformer;Transformers (B);(10BA) Isolated Generator Busduct 10BAA incl. 10BAB, BAC",2,6,0.0000016976,0.0054933876,0.0022380468,5,1.0,0.0001879459,0.0136986301,0.0184615385,0.0025625,0.0140992167,0.0070785071,0.0112107623,1.0,0.0437230543
1.3.1.1.7.1.4-13,10BA50,"Install Support Steel  Transformer Area",7112,"CCGTD1_IPS",TT_Task,"58456",-,-,-,100,TK_Complete,26/04/2019,26/04/2019,10/05/2019,24/07/2019,"KD_C07 FS,10BAT20 FS","KD_C07,10BAT20","10BA30 FS,10BA60 FS","10BA30,10BA60",195,232,197,244,45,54,46,57,55,,"CCGT D1_Integrated Programme Schedule;M&E;Construction;M&E Construction;Transformer;Transformers (B);(10BA) Isolated Generator Busduct 10BAA incl. 10BAB, BAC",2,2,0.0000026091,0.0067141404,0.0008138352,14,0.0,0.0001126637,0.0136986301,0.0061538462,0.0039385417,0.017232376,0.0025740026,0.0313901345,0.0,0.0128763326
1.3.1.1.7.1.4-14,10BA40,"NDE",7112,"CCGTD1_IPS",TT_Task,"58456",-,-,-,100,TK_Complete,04/06/2019,20/05/2019,10/07/2019,14/09/2019,"10BA30 SS","10BA30","10BA150 FS","10BA150",200,235,206,252,46,54,48,58,61,,"CCGT D1_Integrated Programme Schedule;M&E;Construction;M&E Construction;Transformer;Transformers (B);(10BA) Isolated Generator Busduct 10BAA incl. 10BAB, BAC",1,1,0.0000000828,0.0044760936,0.002034588,36,0.0,0.0002045479,0.0068493151,0.0030769231,0.000125,0.0114882507,0.0064350064,0.0807174888,0.0,0.0505256858
1.3.1.1.7.1.4-15,10BA100,"IPB Connection to Generator & Generator Breaker after HI Voltage Test",7112,"CCGTD1_IPS",TT_Task,"58456",-,-,-,100,TK_Complete,12/07/2019,13/05/2019,16/07/2019,07/11/2019,"10BA90 FS,10BA30 FS,10BAC10 FS","10BA90,10BA30,10BAC10","10BA150 FS","10BA150",206,234,206,259,48,54,48,60,66,,"CCGT D1_Integrated Programme Schedule;M&E;Construction;M&E Construction;Transformer;Transformers (B);(10BA) Isolated Generator Busduct 10BAA incl. 10BAB, BAC",3,1,0.0000028983,0.0044760936,0.0083418108,4,0.0,0.0001828331,0.0205479452,0.0030769231,0.004375,0.0114882507,0.0263835264,0.0089686099,0.0,0.0416281193
1.3.1.1.7.1.4-16,10BA110,"IPB Connection at Main Transformer & Auxiliary Transformers after HI Voltage Test",7112,"CCGTD1_IPS",TT_Task,"58456",-,-,-,100,TK_Complete,29/08/2019,13/07/2019,31/08/2019,24/10/2019,"10BA30 FF,10BA90 FF,10BAT20 FS","10BA30,10BA90,10BAT20","10BA130 FS","10BA130",213,243,213,257,49,56,49,60,70,,"CCGT D1_Integrated Programme Schedule;M&E;Construction;M&E Construction;Transformer;Transformers (B);(10BA) Isolated Generator Busduct 10BAA incl. 10BAB, BAC",3,1,0.0,0.0048830112,0.0024415056,2,0.0,0.0001133385,0.0205479452,0.0030769231,0.0,0.0125326371,0.0077220077,0.0044843049,0.0,0.0131528173
1.3.1.1.7.1.4-17,10BA130,"IPB Connection at ExcitationTransformer & SFC Transformer after HI Voltage Test",7112,"CCGTD1_IPS",TT_Task,"58456",-,-,-,100,TK_Complete,02/09/2019,17/08/2019,04/09/2019,07/11/2019,"10BA30 FS,10BA110 FS,10BA90 FS,10BAT20 FS","10BA30,10BA110,10BA90,10BAT20","10BA140 FF","10BA140",213,248,214,259,49,57,49,60,75,,"CCGT D1_Integrated Programme Schedule;M&E;Construction;M&E Construction;Transformer;Transformers (B);(10BA) Isolated Generator Busduct 10BAA incl. 10BAB, BAC",4,1,0.0000011645,0.0046795524,0.0026449644,2,0.0,0.0002098324,0.0273972603,0.0030769231,0.0017578125,0.0120104439,0.0083655084,0.0044843049,0.0,0.0526910321
1.3.1.1.7.1.5,58455,"(10BAC) Generator Circuit Breaker",7112,"CCGTD1_IPS",WBS,"58449",,,,100,Complete,18/06/2019,06/05/2019,22/08/2019,03/09/2019,,,,,202,233,212,250,47,54,49,58,,,"CCGT D1_Integrated Programme Schedule;M&E;Construction;M&E Construction;Transformer;Transformers (B)"
1.3.1.1.7.1.5-1,10BAC10,"Install Generator Circuit Breaker (GCB) onto Support Steel",7112,"CCGTD1_IPS",TT_Task,"58455",-,-,-,100,TK_Complete,18/06/2019,14/05/2019,04/07/2019,26/07/2019,"SI1BAA4-25 FS,SI1BAC4-25 FS,SI1CHA4-10 FS,10BA20 SS,10MKA1140 FS,SUB-EIC-180 FS","SI1BAA4-25,SI1BAC4-25,SI1CHA4-10,10BA20,10MKA1140,SUB-EIC-180","10CHA80 FS,10BA100 FS,10BAC20 FS","10CHA80,10BA100,10BAC20",202,234,205,245,47,54,47,57,63,,"CCGT D1_Integrated Programme Schedule;M&E;Construction;M&E Construction;Transformer;Transformers (B);(10BAC) Generator Circuit Breaker",6,3,0.0000290964,0.0079348932,0.0067141404,16,0.0,0.0002656807,0.0410958904,0.0092307692,0.0439216146,0.0203655352,0.0212355212,0.0358744395,0.0,0.07557476
1.3.1.1.7.1.5-2,10BAC30,"Precommissioning",7112,"CCGTD1_IPS",TT_Task,"58455",-,-,-,100,TK_Complete,31/07/2019,27/07/2019,10/08/2019,01/08/2019,"10BAC20 FS","10BAC20","10BAC40 FS","10BAC40",209,245,210,245,48,57,49,57,67,,"CCGT D1_Integrated Programme Schedule;M&E;Construction;M&E Construction;Transformer;Transformers (B);(10BAC) Generator Circuit Breaker",1,1,0.0000031985,0.0006103764,0.007121058,10,1.0,0.0002081728,0.0068493151,0.0030769231,0.004828125,0.0015665796,0.0225225225,0.0224215247,1.0,0.052010997
1.3.1.1.7.1.5-3,10BAC40,"Test",7112,"CCGTD1_IPS",TT_Task,"58455",-,-,-,100,TK_Complete,12/08/2019,02/08/2019,22/08/2019,03/09/2019,"10BAC30 FS","10BAC30","TOP2400 FS","TOP2400",210,246,212,250,49,57,49,58,69,,"CCGT D1_Integrated Programme Schedule;M&E;Construction;M&E Construction;Transformer;Transformers (B);(10BAC) Generator Circuit Breaker",1,1,0.0000018321,0.0004069176,0.0073245168,10,0.0,0.0002584975,0.0068493151,0.0030769231,0.002765625,0.0010443864,0.0231660232,0.0224215247,0.0,0.072631437
1.3.1.1.7.1.5-4,10BAC20,"Install Control Panel",7112,"CCGTD1_IPS",TT_Task,"58455",-,-,-,100,TK_Complete,05/07/2019,06/05/2019,11/07/2019,27/07/2019,"10BAC10 FS","10BAC10","10BAC30 FS","10BAC30",205,233,206,245,47,54,48,57,65,,"CCGT D1_Integrated Programme Schedule;M&E;Construction;M&E Construction;Transformer;Transformers (B);(10BAC) Generator Circuit Breaker",1,1,0.000004482,0.0008138352,0.0069175992,6,0.0,0.0001490772,0.0068493151,0.0030769231,0.006765625,0.0020887728,0.0218790219,0.0134529148,0.0,0.027796671
1.3.1.1.7.1.6,58454,"(10BFT) LV Auxiliary Transformer 10BFT01/02/03/04",7112,"CCGTD1_IPS",WBS,"58449",,,,100,Complete,22/02/2019,01/03/2019,12/08/2019,12/10/2019,,,,,186,224,210,256,43,52,49,59,,,"CCGT D1_Integrated Programme Schedule;M&E;Construction;M&E Construction;Transformer;Transformers (B)"
1.3.1.1.7.1.6-1,10BHT-40,"Cable Pulling",7112,"CCGTD1_IPS",TT_Task,"58454",-,-,-,100,TK_Complete,18/04/2019,13/03/2019,16/05/2019,20/03/2019,"10BHT-10 FS,SI-BZK4-58 FS,10BHT-20 FF","10BHT-10,SI-BZK4-58,10BHT-20","10BHT-70 FS,10BHT-50 FS","10BHT-70,10BHT-50",194,225,198,226,45,52,46,52,54,,"CCGT D1_Integrated Programme Schedule;M&E;Construction;M&E Construction;Transformer;Transformers (B);(10BFT) LV Auxiliary Transformer 10BFT01/02/03/04",3,2,0.0000211712,0.006103764,0.0056968464,28,1.0,0.0002356806,0.0205479452,0.0061538462,0.0319583333,0.0156657963,0.018018018,0.0627802691,1.0,0.0632822506
1.3.1.1.7.1.6-2,10BHT-70,"Hi Pot Testing",7112,"CCGTD1_IPS",TT_Task,"58454",-,-,-,100,TK_Complete,15/06/2019,15/06/2019,27/06/2019,23/07/2019,"10BHT-40 FS,10BHT-50 FS","10BHT-40,10BHT-50","10BHT-80 FS","10BHT-80",202,239,204,244,47,55,47,57,63,,"CCGT D1_Integrated Programme Schedule;M&E;Construction;M&E Construction;Transformer;Transformers (B);(10BFT) LV Auxiliary Transformer 10BFT01/02/03/04",2,1,0.0000211712,0.0056968464,0.006103764,12,0.0,0.0003374596,0.0136986301,0.0030769231,0.0319583333,0.0146214099,0.0193050193,0.0269058296,0.0,0.1049860098
1.3.1.1.7.1.6-3,10BHT-80,"Precommissioning",7112,"CCGTD1_IPS",TT_Task,"58454",-,-,-,100,TK_Complete,31/07/2019,24/07/2019,12/08/2019,12/10/2019,"10BHT-70 FS","10BHT-70","TOP1760 FS,TOP1750 FS,TOP2420 FS,TOP2410 FS,TOP2500 FS","TOP1760,TOP1750,TOP2420,TOP2410,TOP2500",209,244,210,256,48,57,49,59,67,,"CCGT D1_Integrated Programme Schedule;M&E;Construction;M&E Construction;Transformer;Transformers (B);(10BFT) LV Auxiliary Transformer 10BFT01/02/03/04",1,5,0.000021047,0.0054933876,0.0063072228,12,0.0,0.0003686156,0.0068493151,0.0153846154,0.0317708333,0.0140992167,0.0199485199,0.0269058296,0.0,0.1177521374
1.3.1.1.7.1.6-4,10BHT-10,"Cable Raceway",7112,"CCGTD1_IPS",TT_Task,"58454",-,-,-,100,TK_Complete,22/02/2019,01/03/2019,15/03/2019,13/03/2019,"","","10BHT-40 FS","10BHT-40",186,224,189,225,43,52,44,52,47,,"CCGT D1_Integrated Programme Schedule;M&E;Construction;M&E Construction;Transformer;Transformers (B);(10BFT) LV Auxiliary Transformer 10BFT01/02/03/04",0,1,0.0,0.0063072228,0.0,21,1.0,0.0000812387,0.0,0.0030769231,0.0,0.0161879896,0.0,0.0470852018,1.0,0.0
1.3.1.1.7.1.6-5,10BHT-20,"LV Transformer Installation Programme (7 days x 4 transformers)",7112,"CCGTD1_IPS",TT_Task,"58454",-,-,-,100,TK_Complete,11/03/2019,27/03/2019,03/04/2019,12/06/2019,"KD_D08 FS,SUB-EIC-180 FS","KD_D08,SUB-EIC-180","10BHT-40 FF","10BHT-40",188,227,192,238,44,53,44,55,48,,"CCGT D1_Integrated Programme Schedule;M&E;Construction;M&E Construction;Transformer;Transformers (B);(10BFT) LV Auxiliary Transformer 10BFT01/02/03/04",2,1,0.0000181901,0.0063072228,0.00508647,23,0.0,0.0000984055,0.0136986301,0.0030769231,0.0274583333,0.0161879896,0.0160875161,0.0515695067,0.0,0.0070340596
1.3.1.1.7.1.6-6,10BHT-50,"Cable Termination",7112,"CCGTD1_IPS",TT_Task,"58454",-,-,-,100,TK_Complete,03/05/2019,03/05/2019,13/05/2019,17/08/2019,"10BHT-40 FS","10BHT-40","10BHT-70 FS","10BHT-70",196,233,197,248,45,54,46,57,57,,"CCGT D1_Integrated Programme Schedule;M&E;Construction;M&E Construction;Transformer;Transformers (B);(10BFT) LV Auxiliary Transformer 10BFT01/02/03/04",1,1,0.0,0.0059003052,0.0059003052,10,0.0,0.0001724168,0.0068493151,0.0030769231,0.0,0.0151436031,0.0186615187,0.0224215247,0.0,0.0373600603
1.3.1.1.7.1.7,58453,"(10MKC) SEE Transformer 10MKC01",7112,"CCGTD1_IPS",WBS,"58449",,,,100,Complete,25/03/2019,11/03/2019,13/09/2019,19/10/2019,,,,,190,225,215,257,44,52,50,60,,,"CCGT D1_Integrated Programme Schedule;M&E;Construction;M&E Construction;Transformer;Transformers (B)"
1.3.1.1.7.1.7-1,10SEE-10,"Cable Raceway",7112,"CCGTD1_IPS",TT_Task,"58453",-,-,-,100,TK_Complete,02/04/2019,02/04/2019,16/04/2019,14/05/2019,"ECS21.1010 FS,KD_D08 FS,ECS18.1170 FS,KD_D06 FS,SI-BZP4-27 FS,SUB-EIC-180 FS,KD_C17 FS","ECS21.1010,KD_D08,ECS18.1170,KD_D06,SI-BZP4-27,SUB-EIC-180,KD_C17","10SEE-20 FS","10SEE-20",191,228,193,234,44,53,45,54,52,,"CCGT D1_Integrated Programme Schedule;M&E;Construction;M&E Construction;Transformer;Transformers (B);(10MKC) SEE Transformer 10MKC01",7,1,0.0000067488,0.0059003052,0.0063072228,14,0.0,0.0001910224,0.0479452055,0.0030769231,0.0101875,0.0151436031,0.0199485199,0.0313901345,0.0,0.0449836561
1.3.1.1.7.1.7-2,10SEE-20,"SEE Transformer Installation Programme",7112,"CCGTD1_IPS",TT_Task,"58453",-,-,-,100,TK_Complete,25/03/2019,27/03/2019,11/04/2019,04/06/2019,"KD_D02 FS,10SEE-10 FS,ECS18.1170 FS,KD_D08 FS","KD_D02,10SEE-10,ECS18.1170,KD_D08","10SEE-40 FS","10SEE-40",190,227,193,237,44,53,45,55,49,,"CCGT D1_Integrated Programme Schedule;M&E;Construction;M&E Construction;Transformer;Transformers (B);(10MKC) SEE Transformer 10MKC01",4,1,0.0000085111,0.0056968464,0.0067141404,17,0.0,0.0002948038,0.0273972603,0.0030769231,0.0128476563,0.0146214099,0.0212355212,0.0381165919,0.0,0.0875078896
1.3.1.1.7.1.7-3,10SEE-50,"Cable Termination",7112,"CCGTD1_IPS",TT_Task,"58453",-,-,-,100,TK_Complete,25/06/2019,10/05/2019,11/07/2019,21/09/2019,"10SEE-40 FS","10SEE-40","10SEE-70 FS","10SEE-70",203,234,206,253,47,54,48,59,64,,"CCGT D1_Integrated Programme Schedule;M&E;Construction;M&E Construction;Transformer;Transformers (B);(10MKC) SEE Transformer 10MKC01",1,1,0.0,0.0052899288,0.0075279756,16,0.0,0.0002646224,0.0068493151,0.0030769231,0.0,0.0135770235,0.0238095238,0.0358744395,0.0,0.0751410994
1.3.1.1.7.1.7-4,10SEE-70,"Hi Pot Testing",7112,"CCGTD1_IPS",TT_Task,"58453",-,-,-,100,TK_Complete,08/07/2019,16/07/2019,17/07/2019,10/08/2019,"10SEE-40 FS,10SEE-50 FS","10SEE-40,10SEE-50","10SEE2-80 FS","10SEE2-80",205,243,207,247,48,56,48,57,65,,"CCGT D1_Integrated Programme Schedule;M&E;Construction;M&E Construction;Transformer;Transformers (B);(10MKC) SEE Transformer 10MKC01",2,1,0.0000080556,0.00508647,0.0077314344,9,0.0,0.0004097979,0.0136986301,0.0030769231,0.0121601562,0.0130548303,0.0244530245,0.0201793722,0.0,0.1346264873
1.3.1.1.7.1.7-5,10SEE2-80,"Precommissioning",7112,"CCGTD1_IPS",TT_Task,"58453",-,-,-,100,TK_Complete,02/09/2019,02/09/2019,13/09/2019,19/10/2019,"10SEE-70 FS,CP1BZK7A25 FS","10SEE-70,CP1BZK7A25","TOP1680 FS,TOP2580 FS","TOP1680,TOP2580",213,250,215,257,49,58,50,60,75,,"CCGT D1_Integrated Programme Schedule;M&E;Construction;M&E Construction;Transformer;Transformers (B);(10MKC) SEE Transformer 10MKC01",2,2,0.0000210122,0.0048830112,0.0089521872,11,0.0,0.0004793047,0.0136986301,0.0061538462,0.0317182626,0.0125326371,0.0283140283,0.0246636771,0.0,0.1631067813
1.3.1.1.7.1.7-6,10SEE-40,"Cable Pulling",7112,"CCGTD1_IPS",TT_Task,"58453",-,-,-,100,TK_Complete,11/04/2019,11/03/2019,25/05/2019,27/06/2019,"SI-BZK4-25 FS,SI-BZK4-58 FS,10SEE-20 FS","SI-BZK4-25,SI-BZK4-58,10SEE-20","10SEE-70 FS,10SEE-50 FS","10SEE-70,10SEE-50",193,225,199,240,45,52,46,56,53,,"CCGT D1_Integrated Programme Schedule;M&E;Construction;M&E Construction;Transformer;Transformers (B);(10MKC) SEE Transformer 10MKC01",3,2,0.0000089665,0.0054933876,0.0073245168,44,0.0,0.0003364048,0.0205479452,0.0061538462,0.0135351562,0.0140992167,0.0231660232,0.0986547085,0.0,0.1045538271
1.3.1.1.7.1.8,58452,"(10BBT) MV Auxiliary Transformer 10BBT01",7112,"CCGTD1_IPS",WBS,"58449",,,,100,Complete,11/03/2019,11/03/2019,26/08/2019,11/10/2019,,,,,188,225,212,256,44,52,49,59,,,"CCGT D1_Integrated Programme Schedule;M&E;Construction;M&E Construction;Transformer;Transformers (B)"
1.3.1.1.7.1.8-1,10BBT10,"Cable Raceway",7112,"CCGTD1_IPS",TT_Task,"58452",-,-,-,100,TK_Complete,02/04/2019,02/04/2019,16/04/2019,03/05/2019,"ECS18.1210 FS,KD_D08 FS,SI-BZP4-27 FS,SUB-EIC-180 FS,KD_D06 FS","ECS18.1210,KD_D08,SI-BZP4-27,SUB-EIC-180,KD_D06","10BBT60 FS","10BBT60",191,228,193,233,44,53,45,54,52,,"CCGT D1_Integrated Programme Schedule;M&E;Construction;M&E Construction;Transformer;Transformers (B);(10BBT) MV Auxiliary Transformer 10BBT01",5,1,0.0000258843,0.008138352,0.0056968464,14,0.0,0.0001633958,0.0342465753,0.0030769231,0.0390729167,0.0208877285,0.018018018,0.0313901345,0.0,0.0336637194
1.3.1.1.7.1.8-2,101BBT20,"BBT Transformer Installation Programme",7112,"CCGTD1_IPS",TT_Task,"58452",-,-,-,100,TK_Complete,11/03/2019,20/03/2019,30/04/2019,03/06/2019,"KD_C07 FS","KD_C07","10BBT50 FS","10BBT50",188,226,195,237,44,52,45,55,48,,"CCGT D1_Integrated Programme Schedule;M&E;Construction;M&E Construction;Transformer;Transformers (B);(10BBT) MV Auxiliary Transformer 10BBT01",1,1,0.0000012376,0.0079348932,0.0004069176,50,0.0,0.0000955866,0.0068493151,0.0030769231,0.0018682292,0.0203655352,0.0012870013,0.1121076233,0.0,0.0058790368
1.3.1.1.7.1.8-3,10BBT50,"Cable Termination",7112,"CCGTD1_IPS",TT_Task,"58452",-,-,-,100,TK_Complete,07/05/2019,07/05/2019,24/05/2019,20/09/2019,"10BBT60 FS,101BBT20 FS","10BBT60,101BBT20","10BBT70 FS","10BBT70",196,233,199,253,45,54,46,59,57,,"CCGT D1_Integrated Programme Schedule;M&E;Construction;M&E Construction;Transformer;Transformers (B);(10BBT) MV Auxiliary Transformer 10BBT01",2,1,0.0000027489,0.0077314344,0.0067141404,17,0.0,0.0002674797,0.0136986301,0.0030769231,0.0041494792,0.019843342,0.0212355212,0.0381165919,0.0,0.0763118785
1.3.1.1.7.1.8-4,10BBT60,"Cable Pulling",7112,"CCGTD1_IPS",TT_Task,"58452",-,-,-,100,TK_Complete,25/03/2019,11/03/2019,26/04/2019,07/06/2019,"SI-BZK4-52 FS,10BBT10 FS","SI-BZK4-52,10BBT10","10BBT50 FS,10BBT70 FS","10BBT50,10BBT70",190,225,195,238,44,52,45,55,49,,"CCGT D1_Integrated Programme Schedule;M&E;Construction;M&E Construction;Transformer;Transformers (B);(10BBT) MV Auxiliary Transformer 10BBT01",2,2,0.0000280995,0.0079348932,0.006103764,32,0.0,0.0002246287,0.0136986301,0.0061538462,0.0424166667,0.0203655352,0.0193050193,0.0717488789,0.0,0.0587537587
1.3.1.1.7.1.8-5,10BBT70,"Hi Pot Testing",7112,"CCGTD1_IPS",TT_Task,"58452",-,-,-,100,TK_Complete,06/06/2019,28/06/2019,20/06/2019,10/08/2019,"10BBT60 FS,10BBT50 FS","10BBT60,10BBT50","10BBT90 FS","10BBT90",201,241,203,247,46,56,47,57,62,,"CCGT D1_Integrated Programme Schedule;M&E;Construction;M&E Construction;Transformer;Transformers (B);(10BBT) MV Auxiliary Transformer 10BBT01",2,1,0.0000313659,0.0075279756,0.0069175992,14,0.0,0.0003953443,0.0136986301,0.0030769231,0.0473473958,0.0193211488,0.0218790219,0.0313901345,0.0,0.1287041829
1.3.1.1.7.1.8-6,10BBT90,"Precommissioning",7112,"CCGTD1_IPS",TT_Task,"58452",-,-,-,100,TK_Complete,12/08/2019,28/08/2019,26/08/2019,11/10/2019,"10BBT70 FS","10BBT70","TOP1770 FS,TOP2580 FS","TOP1770,TOP2580",210,249,212,256,49,58,49,59,69,,"CCGT D1_Integrated Programme Schedule;M&E;Construction;M&E Construction;Transformer;Transformers (B);(10BBT) MV Auxiliary Transformer 10BBT01",1,2,0.0000314487,0.0073245168,0.007121058,14,0.0,0.0004179753,0.0068493151,0.0061538462,0.0474723958,0.0187989556,0.0225225225,0.0313901345,0.0,0.1379771578
1.3.1.1.7.1.9,58451,"(10MBJ) SFC Transformer 10MBJ01",7112,"CCGTD1_IPS",WBS,"58449",,,,100,Complete,25/03/2019,11/03/2019,15/08/2019,12/10/2019,,,,,190,225,211,256,44,52,49,59,,,"CCGT D1_Integrated Programme Schedule;M&E;Construction;M&E Construction;Transformer;Transformers (B)"
1.3.1.1.7.1.9-1,10SFC-10,"Cable Raceway",7112,"CCGTD1_IPS",TT_Task,"58451",-,-,-,100,TK_Complete,02/04/2019,02/04/2019,16/04/2019,16/04/2019,"SI-BZP4-27 FS,ECS21.1010 FS,KD_D06 FS,KD_D08 FS,SI1BFT4-25 FS,ECS18.1130 FS,SUB-EIC-180 FS","SI-BZP4-27,ECS21.1010,KD_D06,KD_D08,SI1BFT4-25,ECS18.1130,SUB-EIC-180","10SFC-20 FS","10SFC-20",191,228,193,230,44,53,45,53,52,,"CCGT D1_Integrated Programme Schedule;M&E;Construction;M&E Construction;Transformer;Transformers (B);(10MBJ) SFC Transformer 10MBJ01",7,1,0.000006459,0.0046795524,0.0063072228,14,1.0,0.0002391727,0.0479452055,0.0030769231,0.00975,0.0120104439,0.0199485199,0.0313901345,1.0,0.0647131355
1.3.1.1.7.1.9-2,10SFC-20,"SFC Transformer Installation Programme",7112,"CCGTD1_IPS",TT_Task,"58451",-,-,-,100,TK_Complete,25/03/2019,27/03/2019,11/04/2019,04/06/2019,"KD_D08 FS,KD_D02 FS,10SFC-10 FS,ECS18.1130 FS","KD_D08,KD_D02,10SFC-10,ECS18.1130","10SFC-40 FS","10SFC-40",190,227,193,237,44,53,45,55,49,,"CCGT D1_Integrated Programme Schedule;M&E;Construction;M&E Construction;Transformer;Transformers (B);(10MBJ) SFC Transformer 10MBJ01",4,1,0.0000076157,0.0044760936,0.0067141404,17,0.0,0.0003120025,0.0273972603,0.0030769231,0.0114960938,0.0114882507,0.0212355212,0.0381165919,0.0,0.0945550173
1.3.1.1.7.1.9-3,10SFC-50,"Cable Termination",7112,"CCGTD1_IPS",TT_Task,"58451",-,-,-,100,TK_Complete,05/06/2019,25/05/2019,17/06/2019,20/09/2019,"10SFC-40 FS","10SFC-40","10SFC-70 FS","10SFC-70",201,236,202,253,46,55,47,59,61,,"CCGT D1_Integrated Programme Schedule;M&E;Construction;M&E Construction;Transformer;Transformers (B);(10MBJ) SFC Transformer 10MBJ01",1,1,0.0,0.004069176,0.0075279756,12,0.0,0.0002800776,0.0068493151,0.0030769231,0.0,0.0104438642,0.0238095238,0.0269058296,0.0,0.0814738534
1.3.1.1.7.1.9-4,10SFC-40,"Cable Pulling",7112,"CCGTD1_IPS",TT_Task,"58451",-,-,-,100,TK_Complete,11/04/2019,11/03/2019,15/05/2019,17/06/2019,"SI-BZK4-25 FS,SI-BZK4-58 FS,10SFC-20 FS","SI-BZK4-25,SI-BZK4-58,10SFC-20","10SFC-70 FS,10SFC-50 FS","10SFC-70,10SFC-50",193,225,198,239,45,52,46,55,53,,"CCGT D1_Integrated Programme Schedule;M&E;Construction;M&E Construction;Transformer;Transformers (B);(10MBJ) SFC Transformer 10MBJ01",3,2,0.0000076157,0.0042726348,0.0073245168,34,0.0,0.0003501331,0.0205479452,0.0061538462,0.0114960938,0.0109660574,0.0231660232,0.0762331839,0.0,0.1101789736
1.3.1.1.7.1.9-5,10SFC-70,"Hi Pot Testing",7112,"CCGTD1_IPS",TT_Task,"58451",-,-,-,100,TK_Complete,28/06/2019,25/06/2019,04/07/2019,10/08/2019,"10SFC-50 FS,10SFC-40 FS","10SFC-50,10SFC-40","10SFC-80 FS","10SFC-80",204,240,205,247,47,56,47,57,65,,"CCGT D1_Integrated Programme Schedule;M&E;Construction;M&E Construction;Transformer;Transformers (B);(10MBJ) SFC Transformer 10MBJ01",2,1,0.000006208,0.0038657172,0.0077314344,6,0.0,0.0004192491,0.0136986301,0.0030769231,0.0093710938,0.009921671,0.0244530245,0.0134529148,0.0,0.1384991052
1.3.1.1.7.1.9-6,10SFC-80,"Precommissioning",7112,"CCGTD1_IPS",TT_Task,"58451",-,-,-,100,TK_Complete,03/08/2019,24/08/2019,15/08/2019,12/10/2019,"10SFC-70 FS,CP1BZK7A25 FS","10SFC-70,CP1BZK7A25","TOP1680 FS","TOP1680",209,249,211,256,48,58,49,59,68,,"CCGT D1_Integrated Programme Schedule;M&E;Construction;M&E Construction;Transformer;Transformers (B);(10MBJ) SFC Transformer 10MBJ01",2,1,0.0000121626,0.0036622584,0.0089521872,12,0.0,0.0004917837,0.0136986301,0.0030769231,0.0183597556,0.0093994778,0.0283140283,0.0269058296,0.0,0.1682200102
1.3.1.1.7.1.10,58450,"(10BAT) Main Transformer 10BAT01",7112,"CCGTD1_IPS",WBS,"58449",,,,100,Complete,21/02/2019,06/02/2019,14/08/2019,19/08/2019,,,,,186,220,211,248,43,51,49,57,,,"CCGT D1_Integrated Programme Schedule;M&E;Construction;M&E Construction;Transformer;Transformers (B)"
1.3.1.1.7.1.10-1,10BAT10,"Cable Raceway",7112,"CCGTD1_IPS",TT_Task,"58450",-,-,-,100,TK_Complete,01/04/2019,03/04/2019,25/04/2019,02/05/2019,"SI-BZP4-27 FS,SI1BBT4-25 FS,SUB-EIC-180 FS,SI1BAT4-25 FS,KD_C07 FS","SI-BZP4-27,SI1BBT4-25,SUB-EIC-180,SI1BAT4-25,KD_C07","10BAT50 FS","10BAT50",191,228,195,232,44,53,45,54,50,,"CCGT D1_Integrated Programme Schedule;M&E;Construction;M&E Construction;Transformer;Transformers (B);(10BAT) Main Transformer 10BAT01",5,1,0.0000071658,0.0105798576,0.0056968464,24,0.8,0.0002299352,0.0342465753,0.0030769231,0.0108169271,0.027154047,0.018018018,0.0538116592,0.8,0.0609281084
1.3.1.1.7.1.10-2,10BAT20,"BAT Transformer Installation Programme",7112,"CCGTD1_IPS",TT_Task,"58450",-,-,-,100,TK_Complete,21/02/2019,06/02/2019,20/05/2019,26/06/2019,"KD_C07 FS,10BAT30 FS","KD_C07,10BAT30","10BA50 FS,10SGC-01-20 SS,10BA110 FS,10BA130 FS,10BAT50 FF","10BA50,10SGC-01-20,10BA110,10BA130,10BAT50",186,220,198,240,43,51,46,56,47,,"CCGT D1_Integrated Programme Schedule;M&E;Construction;M&E Construction;Transformer;Transformers (B);(10BAT) Main Transformer 10BAT01",2,5,0.000004811,0.0160732452,0.0006103764,88,0.0,0.0001771132,0.0136986301,0.0153846154,0.0072622396,0.0412532637,0.0019305019,0.197309417,0.0,0.0392843851
1.3.1.1.7.1.10-3,10BAT50,"Cable Pulling",7112,"CCGTD1_IPS",TT_Task,"58450",-,-,-,100,TK_Complete,02/05/2019,02/05/2019,06/06/2019,26/06/2019,"10BAT10 FS,10BAT20 FF","10BAT10,10BAT20","10BAT90 FS","10BAT90",196,232,201,240,45,54,46,56,56,,"CCGT D1_Integrated Programme Schedule;M&E;Construction;M&E Construction;Transformer;Transformers (B);(10BAT) Main Transformer 10BAT01",2,1,0.0000131102,0.0103763988,0.0063072228,35,0.0,0.0003454461,0.0136986301,0.0030769231,0.0197901042,0.0266318538,0.0199485199,0.0784753363,0.0,0.1082584822
1.3.1.1.7.1.10-4,10BAT90,"Cable Termination",7112,"CCGTD1_IPS",TT_Task,"58450",-,-,-,100,TK_Complete,25/05/2019,14/05/2019,06/06/2019,17/08/2019,"10BAT50 FS","10BAT50","10BFT100 FS,10BAT120 FS","10BFT100,10BAT120",199,234,201,248,46,54,46,57,60,,"CCGT D1_Integrated Programme Schedule;M&E;Construction;M&E Construction;Transformer;Transformers (B);(10BAT) Main Transformer 10BAT01",1,2,0.0000138969,0.01017294,0.0065106816,12,0.0,0.0003753822,0.0068493151,0.0061538462,0.0209776042,0.0261096606,0.0205920206,0.0269058296,0.0,0.1205247351
1.3.1.1.7.1.10-5,10BAT120,"Precommissioning",7112,"CCGTD1_IPS",TT_Task,"58450",-,-,-,100,TK_Complete,02/08/2019,12/08/2019,14/08/2019,19/08/2019,"CP1BZK7A25 FS,10BFT100 FS,10BAT90 FS","CP1BZK7A25,10BFT100,10BAT90","TOP1660 FS","TOP1660",209,247,211,248,48,57,49,57,68,,"CCGT D1_Integrated Programme Schedule;M&E;Construction;M&E Construction;Transformer;Transformers (B);(10BAT) Main Transformer 10BAT01",3,1,0.0000705949,0.0097660224,0.0093591048,12,1.0,0.0006757073,0.0205479452,0.0030769231,0.1065643029,0.0250652742,0.0296010296,0.0269058296,1.0,0.2435823887
1.3.1.1.7.1.10-6,10BFT100,"Hi Pot Testing",7112,"CCGTD1_IPS",TT_Task,"58450",-,-,-,100,TK_Complete,26/06/2019,29/06/2019,06/07/2019,10/08/2019,"10BAT90 FS,10AC70 FF","10BAT90,10AC70","10BAT120 FS","10BAT120",204,241,205,247,47,56,47,57,64,,"CCGT D1_Integrated Programme Schedule;M&E;Construction;M&E Construction;Transformer;Transformers (B);(10BAT) Main Transformer 10BAT01",2,1,0.0000099059,0.0099694812,0.0079348932,10,0.0,0.0004302698,0.0136986301,0.0030769231,0.014953125,0.0255874674,0.0250965251,0.0224215247,0.0,0.143014837
1.3.1.1.7.1.10-7,10BAT30,"Install, grout 30 Support Plates in Foundation",7112,"CCGTD1_IPS",TT_Task,"58450",-,-,-,100,TK_Complete,30/04/2019,30/04/2019,06/05/2019,07/05/2019,"KD_C07 FS","KD_C07","10BAT20 FS","10BAT20",195,232,196,233,45,54,45,54,56,,"CCGT D1_Integrated Programme Schedule;M&E;Construction;M&E Construction;Transformer;Transformers (B);(10BAT) Main Transformer 10BAT01",1,1,0.0,0.016276704,0.0004069176,6,1.0,0.0000829605,0.0068493151,0.0030769231,0.0,0.0417754569,0.0012870013,0.0134529148,1.0,0.0007054844
1.3.1.1.8,58429,"BOP",7112,"CCGTD1_IPS",WBS,"58325",,,,100,Complete,06/11/2018,18/10/2018,08/04/2020,26/03/2020,,,,,170,204,245,279,39,47,57,65,,,"CCGT D1_Integrated Programme Schedule;M&E;Construction;M&E Construction"
1.3.1.1.8.1,58445,"Gas Supply System (BOP)",7112,"CCGTD1_IPS",WBS,"58429",,,,100,Complete,13/03/2019,01/03/2019,29/10/2019,23/12/2019,,,,,189,224,221,266,44,52,51,62,,,"CCGT D1_Integrated Programme Schedule;M&E;Construction;M&E Construction;BOP"
1.3.1.1.8.1.1,58447,"(00MKG) CO2 Supply",7112,"CCGTD1_IPS",WBS,"58445",,,,100,Complete,13/03/2019,01/03/2019,12/10/2019,23/12/2019,,,,,189,224,219,266,44,52,51,62,,,"CCGT D1_Integrated Programme Schedule;M&E;Construction;M&E Construction;BOP;Gas Supply System (BOP)"
1.3.1.1.8.1.1-1,00MKG20,"Install Large Bore Pipe/Valves/Supports",7112,"CCGTD1_IPS",TT_Task,"58447",-,-,-,100,TK_Complete,01/04/2019,01/04/2019,02/05/2019,26/07/2019,"SI-BZK4-60 FS,SI-MKG4-60 FS,SI---P4I40 FS,SUB-BOP-160 FS,KD_E03 FS,KD_E04 FS,KD_E05 FS,A1010 FS","SI-BZK4-60,SI-MKG4-60,SI---P4I40,SUB-BOP-160,KD_E03,KD_E04,KD_E05,A1010","00MKG40 FF,00MKG30 FS","00MKG40,00MKG30",191,228,196,245,44,53,45,57,50,,"CCGT D1_Integrated Programme Schedule;M&E;Construction;M&E Construction;BOP;Gas Supply System (BOP);(00MKG) CO2 Supply",8,2,0.0000239315,0.0038657172,0.0118006104,31,0.0,0.0001646847,0.0547945205,0.0061538462,0.036125,0.009921671,0.0373230373,0.0695067265,0.0,0.0341918321
1.3.1.1.8.1.1-2,00MKG50,"EC+I",7112,"CCGTD1_IPS",TT_Task,"58447",-,-,-,100,TK_Complete,14/05/2019,14/05/2019,06/06/2019,25/09/2019,"00MKG30 FS","00MKG30","00MKG90 FF","00MKG90",197,234,201,253,46,54,46,59,58,,"CCGT D1_Integrated Programme Schedule;M&E;Construction;M&E Construction;BOP;Gas Supply System (BOP);(00MKG) CO2 Supply",1,1,0.0000052997,0.0026449644,0.012207528,23,0.0,0.0001146652,0.0068493151,0.0030769231,0.008,0.0067885117,0.0386100386,0.0515695067,0.0,0.0136964197
1.3.1.1.8.1.1-3,00MKG30,"Install Small Bore Pipe/Valves/Supports",7112,"CCGTD1_IPS",TT_Task,"58447",-,-,-,100,TK_Complete,13/03/2019,01/03/2019,06/04/2019,25/07/2019,"00MKG20 FS","00MKG20","00MKG50 FS,00MKG40 FF,00MKG80 FS","00MKG50,00MKG40,00MKG80",189,224,192,244,44,52,44,57,48,,"CCGT D1_Integrated Programme Schedule;M&E;Construction;M&E Construction;BOP;Gas Supply System (BOP);(00MKG) CO2 Supply",1,3,0.0000149468,0.0036622584,0.0120040692,24,0.0,0.000138266,0.0068493151,0.0092307692,0.0225625,0.0093994778,0.037966538,0.0538116592,0.0,0.0233668129
1.3.1.1.8.1.1-4,00MKG40,"NDE",7112,"CCGTD1_IPS",TT_Task,"58447",-,-,-,100,TK_Complete,02/04/2019,02/04/2019,07/05/2019,21/09/2019,"00MKG20 FF,00MKG30 FF","00MKG20,00MKG30","00MKG60 FS","00MKG60",191,228,196,253,44,53,45,59,52,,"CCGT D1_Integrated Programme Schedule;M&E;Construction;M&E Construction;BOP;Gas Supply System (BOP);(00MKG) CO2 Supply",2,1,0.0000049685,0.003051882,0.012207528,35,0.0,0.0002152698,0.0136986301,0.0030769231,0.0075,0.0078328982,0.0386100386,0.0784753363,0.0,0.05491898
1.3.1.1.8.1.1-5,00MKG60,"Line Inspection",7112,"CCGTD1_IPS",TT_Task,"58447",-,-,-,100,TK_Complete,03/08/2019,22/08/2019,12/08/2019,24/08/2019,"00MKG40 FS","00MKG40","00MKG70 FS","00MKG70",209,248,210,249,48,58,49,58,68,,"CCGT D1_Integrated Programme Schedule;M&E;Construction;M&E Construction;BOP;Gas Supply System (BOP);(00MKG) CO2 Supply",1,1,0.0000030639,0.0028484232,0.0124109868,9,1.0,0.0002645301,0.0068493151,0.0030769231,0.004625,0.007310705,0.0392535393,0.0201793722,1.0,0.0751032967
1.3.1.1.8.1.1-6,00MKG70,"Hydro Test",7112,"CCGTD1_IPS",TT_Task,"58447",-,-,-,100,TK_Complete,30/09/2019,18/10/2019,09/10/2019,22/10/2019,"00MKG60 FS","00MKG60","00MKG90 FF","00MKG90",217,257,219,257,50,59,51,60,78,,"CCGT D1_Integrated Programme Schedule;M&E;Construction;M&E Construction;BOP;Gas Supply System (BOP);(00MKG) CO2 Supply",1,1,0.0000010765,0.0026449644,0.0126144456,9,1.0,0.0003065204,0.0068493151,0.0030769231,0.001625,0.0067885117,0.0398970399,0.0201793722,1.0,0.0923087509
1.3.1.1.8.1.1-7,00MKG80,"Painting/Insulation",7112,"CCGTD1_IPS",TT_Task,"58447",-,-,-,100,TK_Complete,14/05/2019,14/05/2019,06/06/2019,23/12/2019,"00MKG30 FS","00MKG30","00MKG90 FF","00MKG90",197,234,201,266,46,54,46,62,58,,"CCGT D1_Integrated Programme Schedule;M&E;Construction;M&E Construction;BOP;Gas Supply System (BOP);(00MKG) CO2 Supply",1,1,0.0000052997,0.0026449644,0.012207528,23,0.0,0.0001146652,0.0068493151,0.0030769231,0.008,0.0067885117,0.0386100386,0.0515695067,0.0,0.0136964197
1.3.1.1.8.1.1-8,00MKG90,"Pre-Commissioning/Flushing/Cleaning",7112,"CCGTD1_IPS",TT_Task,"58447",-,-,-,100,TK_Complete,03/10/2019,25/10/2019,12/10/2019,23/12/2019,"00MKG50 FF,00MKG80 FF,00MKG70 FF","00MKG50,00MKG80,00MKG70","TOP1220 FS,TOP2840 FS","TOP1220,TOP2840",218,258,219,266,50,60,51,62,78,,"CCGT D1_Integrated Programme Schedule;M&E;Construction;M&E Construction;BOP;Gas Supply System (BOP);(00MKG) CO2 Supply",3,2,0.0000105994,0.0024415056,0.013224822,9,0.0,0.0005375394,0.0205479452,0.0061538462,0.016,0.0062663185,0.0418275418,0.0201793722,0.0,0.1869683449
1.3.1.1.8.1.2,58446,"(00MBH) HydrogeN/H2 Supply",7112,"CCGTD1_IPS",WBS,"58445",,,,100,Complete,01/04/2019,01/04/2019,29/10/2019,14/10/2019,,,,,191,228,221,256,44,53,51,59,,,"CCGT D1_Integrated Programme Schedule;M&E;Construction;M&E Construction;BOP;Gas Supply System (BOP)"
1.3.1.1.8.1.2-1,00MBH20,"Install Large Bore Pipe/Valves/Supports",7112,"CCGTD1_IPS",TT_Task,"58446",-,-,-,100,TK_Complete,01/04/2019,01/04/2019,27/04/2019,03/09/2019,"10MKG10 FS,SI---P4I40 FS,SUB-BOP-160 FS,KD_E03 FS,KD_E04 FS,KD_E05 FS,A1010 FS","10MKG10,SI---P4I40,SUB-BOP-160,KD_E03,KD_E04,KD_E05,A1010","10MBH50 FS,00MBH40 FS,00MBH50 FS,00MBH30 FS","10MBH50,00MBH40,00MBH50,00MBH30",191,228,195,250,44,53,45,58,50,,"CCGT D1_Integrated Programme Schedule;M&E;Construction;M&E Construction;BOP;Gas Supply System (BOP);(00MBH) HydrogeN/H2 Supply",7,4,0.0000326401,0.0046795524,0.012207528,26,0.0,0.0001731931,0.0479452055,0.0123076923,0.0492708333,0.0120104439,0.0386100386,0.0582959641,0.0,0.0376781186
1.3.1.1.8.1.2-2,00MBH50,"EC+I",7112,"CCGTD1_IPS",TT_Task,"58446",-,-,-,100,TK_Complete,22/05/2019,22/05/2019,14/06/2019,21/09/2019,"SI-BZK4-58 FS,SI-BZK4-60 FS,00MBH20 FS,00MBH30 FS,SI-BZK4-25 FS,SI-CP-4-40 FS,SI-C--4B40 FS","SI-BZK4-58,SI-BZK4-60,00MBH20,00MBH30,SI-BZK4-25,SI-CP-4-40,SI-C--4B40","00MBH90 FS","00MBH90",199,235,202,253,46,55,47,59,59,,"CCGT D1_Integrated Programme Schedule;M&E;Construction;M&E Construction;BOP;Gas Supply System (BOP);(00MBH) HydrogeN/H2 Supply",7,1,0.0000057344,0.0006103764,0.0136317396,23,0.0,0.0001839634,0.0479452055,0.0030769231,0.00865625,0.0015665796,0.0431145431,0.0515695067,0.0,0.0420912429
1.3.1.1.8.1.2-3,00MBH30,"Install Small Bore Pipe/Valves/Supports",7112,"CCGTD1_IPS",TT_Task,"58446",-,-,-,100,TK_Complete,13/04/2019,13/04/2019,07/05/2019,03/09/2019,"00MBH20 FS","00MBH20","00MBH40 FS,00MBH50 FS,00MBH70 FS","00MBH40,00MBH50,00MBH70",193,230,196,250,45,53,45,58,54,,"CCGT D1_Integrated Programme Schedule;M&E;Construction;M&E Construction;BOP;Gas Supply System (BOP);(00MBH) HydrogeN/H2 Supply",1,3,0.0000050513,0.0016276704,0.0124109868,24,0.0,0.0001184909,0.0068493151,0.0092307692,0.007625,0.0041775457,0.0392535393,0.0538116592,0.0,0.0152640049
1.3.1.1.8.1.2-4,00MBH40,"NDE",7112,"CCGTD1_IPS",TT_Task,"58446",-,-,-,100,TK_Complete,13/04/2019,13/04/2019,10/05/2019,19/09/2019,"00MBH20 FS,00MBH30 FS","00MBH20,00MBH30","00MBH60 FS","00MBH60",193,230,197,252,45,53,46,59,54,,"CCGT D1_Integrated Programme Schedule;M&E;Construction;M&E Construction;BOP;Gas Supply System (BOP);(00MBH) HydrogeN/H2 Supply",2,1,0.000002567,0.0012207528,0.0126144456,27,0.0,0.0001701106,0.0136986301,0.0030769231,0.003875,0.0031331593,0.0398970399,0.0605381166,0.0,0.0364150969
1.3.1.1.8.1.2-5,00MBH60,"Line Inspection",7112,"CCGTD1_IPS",TT_Task,"58446",-,-,-,100,TK_Complete,03/09/2019,26/09/2019,09/09/2019,08/10/2019,"00MBH40 FS","00MBH40","00MBH70 FS","00MBH70",213,253,214,255,49,59,50,59,75,,"CCGT D1_Integrated Programme Schedule;M&E;Construction;M&E Construction;BOP;Gas Supply System (BOP);(00MBH) HydrogeN/H2 Supply",1,1,0.000000207,0.001017294,0.0128179044,6,0.0,0.0002260742,0.0068493151,0.0030769231,0.0003125,0.0026109661,0.0405405405,0.0134529148,0.0,0.0593460498
1.3.1.1.8.1.2-6,00MBH70,"Hydro Test",7112,"CCGTD1_IPS",TT_Task,"58446",-,-,-,100,TK_Complete,04/10/2019,30/09/2019,12/10/2019,04/10/2019,"00MBH30 FS,00MBH60 FS","00MBH30,00MBH60","00MBH80 FS,00MBH90 FS","00MBH80,00MBH90",218,254,219,255,50,59,51,59,78,,"CCGT D1_Integrated Programme Schedule;M&E;Construction;M&E Construction;BOP;Gas Supply System (BOP);(00MBH) HydrogeN/H2 Supply",2,2,0.0000029604,0.0008138352,0.0130213632,8,1.0,0.0002876536,0.0136986301,0.0061538462,0.00446875,0.0020887728,0.0411840412,0.0179372197,1.0,0.0845780982
1.3.1.1.8.1.2-7,00MBH80,"Painting/Insulation",7112,"CCGTD1_IPS",TT_Task,"58446",-,-,-,100,TK_Complete,29/07/2019,26/07/2019,14/08/2019,12/08/2019,"00MBH70 FS","00MBH70","00MBH90 FS","00MBH90",208,245,211,247,48,57,49,57,67,,"CCGT D1_Integrated Programme Schedule;M&E;Construction;M&E Construction;BOP;Gas Supply System (BOP);(00MBH) HydrogeN/H2 Supply",1,1,0.0,0.0006103764,0.013224822,16,1.0,0.0002445409,0.0068493151,0.0030769231,0.0,0.0015665796,0.0418275418,0.0358744395,1.0,0.0669127681
1.3.1.1.8.1.2-8,00MBH90,"Pre-Commissioning/Flushing/Cleaning",7112,"CCGTD1_IPS",TT_Task,"58446",-,-,-,100,TK_Complete,21/10/2019,05/10/2019,29/10/2019,14/10/2019,"00MBH80 FS,00MBH50 FS,00MBH70 FS","00MBH80,00MBH50,00MBH70","TOP2850 FS","TOP2850",220,255,221,256,51,59,51,59,80,,"CCGT D1_Integrated Programme Schedule;M&E;Construction;M&E Construction;BOP;Gas Supply System (BOP);(00MBH) HydrogeN/H2 Supply",3,1,0.0000034365,0.0004069176,0.0146490336,8,1.0,0.0005277797,0.0205479452,0.0030769231,0.0051875,0.0010443864,0.0463320463,0.0179372197,1.0,0.1829693026
1.3.1.1.8.2,58437,"Plant Drainage (GM)",7112,"CCGTD1_IPS",WBS,"58429",,,,100,Complete,01/04/2019,01/04/2019,08/04/2020,26/03/2020,,,,,191,228,245,279,44,53,57,65,,,"CCGT D1_Integrated Programme Schedule;M&E;Construction;M&E Construction;BOP"
1.3.1.1.8.2.1,58444,"(00GA) Raw Water Supply and Storage Tank 00GAC/GAD",7112,"CCGTD1_IPS",WBS,"58437",,,,100,Complete,16/04/2019,18/04/2019,08/04/2020,03/10/2019,,,,,193,230,245,254,45,53,57,59,,,"CCGT D1_Integrated Programme Schedule;M&E;Construction;M&E Construction;BOP;Plant Drainage (GM)"
1.3.1.1.8.2.1-1,00GA20,"Install Large Bore Pipe/Valves/Supports",7112,"CCGTD1_IPS",TT_Task,"58444",-,-,-,100,TK_Complete,30/04/2019,14/05/2019,21/05/2019,03/08/2019,"00GA10 SS","00GA10","00GA30 FS,00GA40 FS,00GA70 FS","00GA30,00GA40,00GA70",195,234,198,246,45,54,46,57,56,,"CCGT D1_Integrated Programme Schedule;M&E;Construction;M&E Construction;BOP;Plant Drainage (GM);(00GA) Raw Water Supply and Storage Tank 00GAC/GAD",1,3,0.0000016886,0.003051882,0.0012207528,21,0.0,0.0001546353,0.0068493151,0.0092307692,0.0025489583,0.0078328982,0.0038610039,0.0470852018,0.0,0.0300740947
1.3.1.1.8.2.1-2,00GA40,"EC+I",7112,"CCGTD1_IPS",TT_Task,"58444",-,-,-,100,TK_Complete,22/05/2019,22/05/2019,01/06/2019,27/09/2019,"00GA20 FS","00GA20","00GA80 FF","00GA80",199,235,200,254,46,55,46,59,59,,"CCGT D1_Integrated Programme Schedule;M&E;Construction;M&E Construction;BOP;Plant Drainage (GM);(00GA) Raw Water Supply and Storage Tank 00GAC/GAD",1,1,0.0000005752,0.0022380468,0.0014242116,10,0.0,0.0001133404,0.0068493151,0.0030769231,0.0008682292,0.0057441253,0.0045045045,0.0224215247,0.0,0.0131536234
1.3.1.1.8.2.1-3,00GA10,"Install Equipment/Skids/Pumps",7112,"CCGTD1_IPS",TT_Task,"58444",-,-,-,100,TK_Complete,16/04/2019,18/04/2019,30/04/2019,10/07/2019,"KD_D06 FS,KD_E03 FS,KD_E04 FS,KD_E05 FS,A1010 FS","KD_D06,KD_E03,KD_E04,KD_E05,A1010","00GA20 SS","00GA20",193,230,195,242,45,53,45,56,54,,"CCGT D1_Integrated Programme Schedule;M&E;Construction;M&E Construction;BOP;Plant Drainage (GM);(00GA) Raw Water Supply and Storage Tank 00GAC/GAD",5,1,0.0000012746,0.0032553408,0.001017294,14,0.0,0.0000862209,0.0342465753,0.0030769231,0.0019239583,0.0083550914,0.0032175032,0.0313901345,0.0,0.0020414393
1.3.1.1.8.2.1-4,00GA80,"Pre-Commissioning/Flushing/Cleaning",7112,"CCGTD1_IPS",TT_Task,"58444",-,-,-,100,TK_Complete,03/04/2020,10/08/2019,08/04/2020,15/08/2019,"00GA70 FF,00GA40 FF,00GA60 FS","00GA70,00GA40,00GA60","SC1230 FS,SC1240 FS,SC1170 FS","SC1230,SC1240,SC1170",244,247,245,247,57,57,57,57,90,,"CCGT D1_Integrated Programme Schedule;M&E;Construction;M&E Construction;BOP;Plant Drainage (GM);(00GA) Raw Water Supply and Storage Tank 00GAC/GAD",3,3,0.0000025167,0.002034588,0.0022380468,5,1.0,0.0004511418,0.0205479452,0.0092307692,0.0037989583,0.0052219321,0.0070785071,0.0112107623,1.0,0.1515671008
1.3.1.1.8.2.1-5,00GA60,"Hydro Test",7112,"CCGTD1_IPS",TT_Task,"58444",-,-,-,100,TK_Complete,28/03/2020,04/08/2019,02/04/2020,09/08/2019,"00GA30 FS","00GA30","00GA80 FS","00GA80",243,246,244,247,56,57,56,57,89,,"CCGT D1_Integrated Programme Schedule;M&E;Construction;M&E Construction;BOP;Plant Drainage (GM);(00GA) Raw Water Supply and Storage Tank 00GAC/GAD",1,1,0.0000004554,0.0022380468,0.0016276704,5,1.0,0.0002077935,0.0068493151,0.0030769231,0.0006875,0.0057441253,0.0051480051,0.0112107623,1.0,0.0518555983
1.3.1.1.8.2.1-6,00GA70,"Painting/Insulation",7112,"CCGTD1_IPS",TT_Task,"58444",-,-,-,100,TK_Complete,22/05/2019,22/05/2019,01/06/2019,03/10/2019,"00GA20 FS","00GA20","00GA80 FF","00GA80",199,235,200,254,46,55,46,59,59,,"CCGT D1_Integrated Programme Schedule;M&E;Construction;M&E Construction;BOP;Plant Drainage (GM);(00GA) Raw Water Supply and Storage Tank 00GAC/GAD",1,1,0.0000005752,0.0022380468,0.0014242116,10,0.0,0.0001133404,0.0068493151,0.0030769231,0.0008682292,0.0057441253,0.0045045045,0.0224215247,0.0,0.0131536234
1.3.1.1.8.2.1-7,00GA30,"Install Small Bore Pipe/Valves/Supports",7112,"CCGTD1_IPS",TT_Task,"58444",-,-,-,100,TK_Complete,10/05/2019,10/05/2019,31/05/2019,03/08/2019,"00GA20 FS","00GA20","00GA60 FS","00GA60",197,234,200,246,46,54,46,57,58,,"CCGT D1_Integrated Programme Schedule;M&E;Construction;M&E Construction;BOP;Plant Drainage (GM);(00GA) Raw Water Supply and Storage Tank 00GAC/GAD",1,1,0.0000002898,0.0024415056,0.0014242116,21,0.0,0.0001486524,0.0068493151,0.0030769231,0.0004375,0.0062663185,0.0045045045,0.0470852018,0.0,0.0276226092
1.3.1.1.8.2.2,58443,"(10GM-02) Plant Drainage System for 10U HW",7112,"CCGTD1_IPS",WBS,"58437",,,,100,Complete,15/04/2019,17/04/2019,14/10/2019,18/12/2019,,,,,193,230,219,265,45,53,51,62,,,"CCGT D1_Integrated Programme Schedule;M&E;Construction;M&E Construction;BOP;Plant Drainage (GM)"
1.3.1.1.8.2.2-1,10GM-02-130,"EC+I",7112,"CCGTD1_IPS",TT_Task,"58443",-,-,-,100,TK_Complete,21/05/2019,21/05/2019,04/06/2019,27/09/2019,"10GM-02-120 FS","10GM-02-120","10GM-02-170 FF","10GM-02-170",198,235,200,254,46,54,46,59,59,,"CCGT D1_Integrated Programme Schedule;M&E;Construction;M&E Construction;BOP;Plant Drainage (GM);(10GM-02) Plant Drainage System for 10U HW",1,1,0.0000002484,0.0004069176,0.0014242116,14,0.0,0.000165288,0.0068493151,0.0030769231,0.000375,0.0010443864,0.0045045045,0.0313901345,0.0,0.0344390268
1.3.1.1.8.2.2-2,10GM-02-110,"Install Large Bore Pipe/Valves/Supports",7112,"CCGTD1_IPS",TT_Task,"58443",-,-,-,100,TK_Complete,30/04/2019,15/05/2019,23/05/2019,03/08/2019,"SI1--P4H40 FS,10GM-02-100 SS,SI1--P4A40 FS,SI---P4I40 FS","SI1--P4H40,10GM-02-100,SI1--P4A40,SI---P4I40","10GM-02-120 FS","10GM-02-120",195,234,199,246,45,54,46,57,56,,"CCGT D1_Integrated Programme Schedule;M&E;Construction;M&E Construction;BOP;Plant Drainage (GM);(10GM-02) Plant Drainage System for 10U HW",4,1,0.000000559,0.0014242116,0.001017294,23,0.0,0.0001526276,0.0273972603,0.0030769231,0.00084375,0.0036553525,0.0032175032,0.0515695067,0.0,0.0292514541
1.3.1.1.8.2.2-3,10GM-02-170,"Pre-Commissioning/Flushing/Cleaning",7112,"CCGTD1_IPS",TT_Task,"58443",-,-,-,100,TK_Complete,04/10/2019,09/10/2019,14/10/2019,18/12/2019,"10GM-02-160 FS,10GM-02-130 FF,10GM-02-150 FS","10GM-02-160,10GM-02-130,10GM-02-150","TOP1890 FS","TOP1890",218,255,219,265,50,59,51,62,78,,"CCGT D1_Integrated Programme Schedule;M&E;Construction;M&E Construction;BOP;Plant Drainage (GM);(10GM-02) Plant Drainage System for 10U HW",3,1,0.0000003726,0.0002034588,0.0022380468,10,0.0,0.000494931,0.0205479452,0.0030769231,0.0005625,0.0005221932,0.0070785071,0.0224215247,0.0,0.1695096423
1.3.1.1.8.2.2-4,10GM-02-150,"Hydro Test",7112,"CCGTD1_IPS",TT_Task,"58443",-,-,-,100,TK_Complete,31/08/2019,28/09/2019,09/09/2019,05/10/2019,"10GM-02-140 FS","10GM-02-140","10GM-02-170 FS","10GM-02-170",213,254,214,255,49,59,50,59,71,,"CCGT D1_Integrated Programme Schedule;M&E;Construction;M&E Construction;BOP;Plant Drainage (GM);(10GM-02) Plant Drainage System for 10U HW",1,1,0.0000000828,0.0004069176,0.0016276704,9,1.0,0.0001913039,0.0068493151,0.0030769231,0.000125,0.0010443864,0.0051480051,0.0201793722,1.0,0.0450989808
1.3.1.1.8.2.2-5,10GM-02-160,"Painting/Insulation",7112,"CCGTD1_IPS",TT_Task,"58443",-,-,-,100,TK_Complete,04/07/2019,25/07/2019,12/07/2019,18/12/2019,"10GM-02-120 FS","10GM-02-120","10GM-02-170 FS","10GM-02-170",205,244,206,265,47,57,48,62,65,,"CCGT D1_Integrated Programme Schedule;M&E;Construction;M&E Construction;BOP;Plant Drainage (GM);(10GM-02) Plant Drainage System for 10U HW",1,1,0.0000002484,0.0004069176,0.0014242116,8,0.0,0.0001292669,0.0068493151,0.0030769231,0.000375,0.0010443864,0.0045045045,0.0179372197,0.0,0.0196794439
1.3.1.1.8.2.2-6,10GM-02-120,"Install Small Bore Pipe/Valves/Supports",7112,"CCGTD1_IPS",TT_Task,"58443",-,-,-,100,TK_Complete,13/05/2019,13/05/2019,21/05/2019,03/08/2019,"SI1--P4A40 FS,SI1--P4H40 FS,10GM-02-110 FS","SI1--P4A40,SI1--P4H40,10GM-02-110","10GM-02-130 FS,10GM-02-160 FS,10GM-02-140 FS","10GM-02-130,10GM-02-160,10GM-02-140",197,234,198,246,46,54,46,57,58,,"CCGT D1_Integrated Programme Schedule;M&E;Construction;M&E Construction;BOP;Plant Drainage (GM);(10GM-02) Plant Drainage System for 10U HW",3,3,0.0000014077,0.0012207528,0.0012207528,8,0.0,0.0002115519,0.0205479452,0.0092307692,0.002125,0.0031331593,0.0038610039,0.0179372197,0.0,0.0533955774
1.3.1.1.8.2.2-7,10GM-02-140,"Line Inspection",7112,"CCGTD1_IPS",TT_Task,"58443",-,-,-,100,TK_Complete,31/07/2019,10/08/2019,08/08/2019,07/09/2019,"10GM-02-120 FS","10GM-02-120","10GM-02-150 FS","10GM-02-150",209,247,210,251,48,57,49,58,67,,"CCGT D1_Integrated Programme Schedule;M&E;Construction;M&E Construction;BOP;Plant Drainage (GM);(10GM-02) Plant Drainage System for 10U HW",1,1,0.0000002898,0.0006103764,0.0014242116,8,0.0,0.0001292669,0.0068493151,0.0030769231,0.0004375,0.0015665796,0.0045045045,0.0179372197,0.0,0.0196794439
1.3.1.1.8.2.2-8,10GM-02-100,"Install Equipment/Skids/Pumps",7112,"CCGTD1_IPS",TT_Task,"58443",-,-,-,100,TK_Complete,15/04/2019,17/04/2019,06/05/2019,09/07/2019,"","","10GM-02-110 SS","10GM-02-110",193,230,196,242,45,53,45,56,54,,"CCGT D1_Integrated Programme Schedule;M&E;Construction;M&E Construction;BOP;Plant Drainage (GM);(10GM-02) Plant Drainage System for 10U HW",0,1,0.0,0.0016276704,0.0,21,0.0,0.0000812387,0.0,0.0030769231,0.0,0.0041775457,0.0,0.0470852018,0.0,0.0
1.3.1.1.8.2.3,58442,"(10GM-01) Plant Drainage System for 10U BE/10UBF",7112,"CCGTD1_IPS",WBS,"58437",,,,100,Complete,02/04/2019,02/04/2019,28/03/2020,21/11/2019,,,,,191,228,243,261,44,53,56,61,,,"CCGT D1_Integrated Programme Schedule;M&E;Construction;M&E Construction;BOP;Plant Drainage (GM)"
1.3.1.1.8.2.3-1,10GM-01-10,"Install Equipment/Skids/Pumps",7112,"CCGTD1_IPS",TT_Task,"58442",-,-,-,100,TK_Complete,15/04/2019,15/04/2019,06/05/2019,17/07/2019,"SI0GN-4B44 FS,SI-GM-4B40 FS,KD_D06 FS,SUB-BOP-160 FS,KD_E03 FS,KD_E05 FS,A1010 FS,KD_C07 FS","SI0GN-4B44,SI-GM-4B40,KD_D06,SUB-BOP-160,KD_E03,KD_E05,A1010,KD_C07","10GM-01-20 FF,10GM-01-50 FS","10GM-01-20,10GM-01-50",193,230,196,243,45,53,45,56,54,,"CCGT D1_Integrated Programme Schedule;M&E;Construction;M&E Construction;BOP;Plant Drainage (GM);(10GM-01) Plant Drainage System for 10U BE/10UBF",8,2,0.0000144127,0.0028484232,0.0118006104,21,0.0,0.0001390319,0.0547945205,0.0061538462,0.02175625,0.007310705,0.0373230373,0.0470852018,0.0,0.0236806476
1.3.1.1.8.2.3-2,10GM-01-20,"Install Large Bore Pipe/Valves/Supports",7112,"CCGTD1_IPS",TT_Task,"58442",-,-,-,100,TK_Complete,02/04/2019,02/04/2019,06/05/2019,24/07/2019,"10GM-01-10 FF","10GM-01-10","10GM-01-30 FS","10GM-01-30",191,228,196,244,44,53,45,57,52,,"CCGT D1_Integrated Programme Schedule;M&E;Construction;M&E Construction;BOP;Plant Drainage (GM);(10GM-01) Plant Drainage System for 10U BE/10UBF",1,1,0.0000024014,0.0026449644,0.0120040692,34,0.0,0.0001793861,0.0068493151,0.0030769231,0.003625,0.0067885117,0.037966538,0.0762331839,0.0,0.0402156927
1.3.1.1.8.2.3-3,10GM-01-80,"Pre-Commissioning/Flushing/Cleaning",7112,"CCGTD1_IPS",TT_Task,"58442",-,-,-,100,TK_Complete,04/10/2019,08/10/2019,10/10/2019,31/10/2019,"10GM-01-60 FS","10GM-01-60","TOP1670 FS","TOP1670",218,255,219,258,50,59,51,60,78,,"CCGT D1_Integrated Programme Schedule;M&E;Construction;M&E Construction;BOP;Plant Drainage (GM);(10GM-01) Plant Drainage System for 10U BE/10UBF",1,1,0.000004393,0.0018311292,0.013224822,6,0.0,0.0003688134,0.0068493151,0.0030769231,0.00663125,0.0046997389,0.0418275418,0.0134529148,0.0,0.1178331804
1.3.1.1.8.2.3-4,10GM-01-60,"Hydro Test",7112,"CCGTD1_IPS",TT_Task,"58442",-,-,-,100,TK_Complete,02/09/2019,28/09/2019,10/09/2019,04/10/2019,"10GM-01-50 FS","10GM-01-50","10GM-01-80 FS","10GM-01-80",213,254,214,255,49,59,50,59,74,,"CCGT D1_Integrated Programme Schedule;M&E;Construction;M&E Construction;BOP;Plant Drainage (GM);(10GM-01) Plant Drainage System for 10U BE/10UBF",1,1,0.0000066702,0.002034588,0.0130213632,8,1.0,0.0003376359,0.0068493151,0.0030769231,0.01006875,0.0052219321,0.0411840412,0.0179372197,1.0,0.1050582523
1.3.1.1.8.2.3-5,10GM-01-30,"Install Small Bore Pipe/Valves/Supports",7112,"CCGTD1_IPS",TT_Task,"58442",-,-,-,100,TK_Complete,27/05/2019,16/05/2019,05/06/2019,23/07/2019,"10GM-01-20 FS,SI1--P4A40 FS,SI1--P4H40 FS","10GM-01-20,SI1--P4A40,SI1--P4H40","10GM-01-50 FF","10GM-01-50",199,234,201,244,46,54,46,57,60,,"CCGT D1_Integrated Programme Schedule;M&E;Construction;M&E Construction;BOP;Plant Drainage (GM);(10GM-01) Plant Drainage System for 10U BE/10UBF",3,1,0.0000008281,0.0024415056,0.0126144456,9,0.0,0.0002344227,0.0205479452,0.0030769231,0.00125,0.0062663185,0.0398970399,0.0201793722,0.0,0.0627668625
1.3.1.1.8.2.3-6,10GM-01-50,"Line Inspection",7112,"CCGTD1_IPS",TT_Task,"58442",-,-,-,100,TK_Complete,31/07/2019,10/08/2019,07/08/2019,02/09/2019,"10GM-01-10 FS,10GM-01-30 FF","10GM-01-10,10GM-01-30","10GM-01-60 FS","10GM-01-60",209,247,210,250,48,57,49,58,67,,"CCGT D1_Integrated Programme Schedule;M&E;Construction;M&E Construction;BOP;Plant Drainage (GM);(10GM-01) Plant Drainage System for 10U BE/10UBF",2,1,0.0000088646,0.0022380468,0.0128179044,7,0.0,0.0003010668,0.0136986301,0.0030769231,0.01338125,0.0057441253,0.0405405405,0.0156950673,0.0,0.0900741493
1.3.1.1.8.2.3-7,10GM-01-90,"Assumption Underground System Available",7112,"CCGTD1_IPS",TT_FinMile,"58442",-,-,-,100,TK_Complete,28/03/2020,21/11/2019,28/03/2020,21/11/2019,"","","TOP1670 FS","TOP1670",243,261,243,261,56,61,56,61,89,,"CCGT D1_Integrated Programme Schedule;M&E;Construction;M&E Construction;BOP;Plant Drainage (GM);(10GM-01) Plant Drainage System for 10U BE/10UBF",0,1,0.0,0.0018311292,0.0,0,1.0,0.0000812387,0.0,0.0030769231,0.0,0.0046997389,0.0,0.0,1.0,0.0
1.3.1.1.8.2.4,58441,"(00GM-01) Plant Drainage System",7112,"CCGTD1_IPS",WBS,"58437",,,,100,Complete,01/04/2019,01/04/2019,09/12/2019,10/02/2020,,,,,191,228,227,273,44,53,53,63,,,"CCGT D1_Integrated Programme Schedule;M&E;Construction;M&E Construction;BOP;Plant Drainage (GM)"
1.3.1.1.8.2.4-1,00GM-01-250,"Install Large Bore Pipe/Valves - Remaining Sections to Pumps & U/G TP",7112,"CCGTD1_IPS",TT_Task,"58441",-,-,-,100,TK_Complete,25/05/2019,25/05/2019,19/06/2019,27/06/2019,"00GM-01-210 FF,00GM-01-100 SS,KD_D10 FS","00GM-01-210,00GM-01-100,KD_D10","00GM-01-260 FF,00GM-01-150 FS","00GM-01-260,00GM-01-150",199,236,203,240,46,55,47,56,59,,"CCGT D1_Integrated Programme Schedule;M&E;Construction;M&E Construction;BOP;Plant Drainage (GM);(00GM-01) Plant Drainage System",3,2,0.0000012421,0.001017294,0.0016276704,25,0.6,0.0002972516,0.0205479452,0.0061538462,0.001875,0.0026109661,0.0051480051,0.0560538117,0.6,0.0885108498
1.3.1.1.8.2.4-2,00GM-01-260,"Install Small Bore Pipe/Valves  - Remaining Sections to Pumps & U/G TP",7112,"CCGTD1_IPS",TT_Task,"58441",-,-,-,100,TK_Complete,25/05/2019,25/05/2019,19/06/2019,12/07/2019,"00GM-01-250 FF","00GM-01-250","00GM-01-150 FS","00GM-01-150",199,236,203,243,46,55,47,56,59,,"CCGT D1_Integrated Programme Schedule;M&E;Construction;M&E Construction;BOP;Plant Drainage (GM);(00GM-01) Plant Drainage System",1,1,0.0,0.0008138352,0.0018311292,25,0.0,0.0002729549,0.0068493151,0.0030769231,0.0,0.0020887728,0.0057915058,0.0560538117,0.0,0.0785553422
1.3.1.1.8.2.4-3,00GM-01-100,"Install Effluent Transfer Pump Station incl Canopy",7112,"CCGTD1_IPS",TT_Task,"58441",-,-,-,100,TK_Complete,17/06/2019,14/06/2019,27/06/2019,11/07/2019,"KD_D06 FS,SI0GN-4B44 FS,KD_F7 FS","KD_D06,SI0GN-4B44,KD_F7","00GM-01-250 SS","00GM-01-250",202,239,204,242,47,55,47,56,63,,"CCGT D1_Integrated Programme Schedule;M&E;Construction;M&E Construction;BOP;Plant Drainage (GM);(00GM-01) Plant Drainage System",3,1,0.000000414,0.0012207528,0.0008138352,10,0.0,0.0001565301,0.0205479452,0.0030769231,0.000625,0.0031331593,0.0025740026,0.0224215247,0.0,0.0308504918
1.3.1.1.8.2.4-4,00GM-01-140,"EC+I",7112,"CCGTD1_IPS",TT_Task,"58441",-,-,-,100,TK_Complete,12/06/2019,21/05/2019,02/07/2019,12/07/2019,"00GM-01-240 FF,00GM-01-210 FS,00GM-01-190 FS","00GM-01-240,00GM-01-210,00GM-01-190","00GM-01-180 FS","00GM-01-180",202,235,204,243,47,54,47,56,62,,"CCGT D1_Integrated Programme Schedule;M&E;Construction;M&E Construction;BOP;Plant Drainage (GM);(00GM-01) Plant Drainage System",3,1,0.0000005797,0.0004069176,0.0016276704,20,0.0,0.000313694,0.0205479452,0.0030769231,0.000875,0.0010443864,0.0051480051,0.0448430493,0.0,0.0952480956
1.3.1.1.8.2.4-5,00GM-01-120,"Install Large Bore Pipe/Valves on Sleepers",7112,"CCGTD1_IPS",TT_Task,"58441",-,-,-,100,TK_Complete,07/06/2019,19/06/2019,03/07/2019,08/07/2019,"00GM-01-220 FS","00GM-01-220","00GM-01-150 FS,00GM-01-130 FS,00GM-01-170 FS","00GM-01-150,00GM-01-130,00GM-01-170",201,239,205,242,46,55,47,56,62,,"CCGT D1_Integrated Programme Schedule;M&E;Construction;M&E Construction;BOP;Plant Drainage (GM);(00GM-01) Plant Drainage System",1,3,0.0000005797,0.0012207528,0.0008138352,26,1.0,0.000175067,0.0068493151,0.0092307692,0.000875,0.0031331593,0.0025740026,0.0582959641,1.0,0.0384459568
1.3.1.1.8.2.4-6,00GM-01-180,"Pre-Commissioning/Flushing/Cleaning",7112,"CCGTD1_IPS",TT_Task,"58441",-,-,-,100,TK_Complete,03/10/2019,09/10/2019,12/10/2019,10/02/2020,"00GM-01-140 FS,00GM-01-160 FS,00GM-01-170 FF","00GM-01-140,00GM-01-160,00GM-01-170","SC1300 FS","SC1300",218,255,219,273,50,59,51,63,78,,"CCGT D1_Integrated Programme Schedule;M&E;Construction;M&E Construction;BOP;Plant Drainage (GM);(00GM-01) Plant Drainage System",3,1,0.0000007453,0.0002034588,0.004069176,9,0.0,0.0009166634,0.0205479452,0.0030769231,0.001125,0.0005221932,0.0128700129,0.0201793722,0.0,0.342313696
1.3.1.1.8.2.4-7,00GM-01-160,"Hydro Test",7112,"CCGTD1_IPS",TT_Task,"58441",-,-,-,100,TK_Complete,31/08/2019,28/09/2019,06/09/2019,03/10/2019,"00GM-01-150 FS","00GM-01-150","00GM-01-180 FS","00GM-01-180",213,254,214,254,49,59,50,59,71,,"CCGT D1_Integrated Programme Schedule;M&E;Construction;M&E Construction;BOP;Plant Drainage (GM);(00GM-01) Plant Drainage System",1,1,0.0000005797,0.0004069176,0.003051882,6,1.0,0.0005297867,0.0068493151,0.0030769231,0.000875,0.0010443864,0.0096525097,0.0134529148,1.0,0.1837917035
1.3.1.1.8.2.4-8,00GM-01-170,"Painting/Insulation",7112,"CCGTD1_IPS",TT_Task,"58441",-,-,-,100,TK_Complete,15/06/2019,20/05/2019,05/07/2019,11/07/2019,"00GM-01-120 FS","00GM-01-120","00GM-01-180 FF","00GM-01-180",202,235,205,242,47,54,47,56,63,,"CCGT D1_Integrated Programme Schedule;M&E;Construction;M&E Construction;BOP;Plant Drainage (GM);(00GM-01) Plant Drainage System",1,1,0.0000001656,0.0004069176,0.001017294,20,0.0,0.0001374747,0.0068493151,0.0030769231,0.00025,0.0010443864,0.0032175032,0.0448430493,0.0,0.0230425817
1.3.1.1.8.2.4-9,00GM-01-130,"Install Small Bore Pipe/Valves on Sleepers",7112,"CCGTD1_IPS",TT_Task,"58441",-,-,-,100,TK_Complete,20/06/2019,05/06/2019,15/07/2019,10/07/2019,"00GM-01-120 FS","00GM-01-120","00GM-01-150 FF","00GM-01-150",203,237,206,242,47,55,48,56,64,,"CCGT D1_Integrated Programme Schedule;M&E;Construction;M&E Construction;BOP;Plant Drainage (GM);(00GM-01) Plant Drainage System",1,1,0.0,0.0008138352,0.001017294,25,0.2,0.0001515337,0.0068493151,0.0030769231,0.0,0.0020887728,0.0032175032,0.0560538117,0.2,0.0288032272
1.3.1.1.8.2.4-10,00GM-01-150,"Line Inspection",7112,"CCGTD1_IPS",TT_Task,"58441",-,-,-,100,TK_Complete,31/07/2019,17/08/2019,08/08/2019,07/09/2019,"00GM-01-120 FS,00GM-01-260 FS,00GM-01-250 FS,00GM-01-130 FF","00GM-01-120,00GM-01-260,00GM-01-250,00GM-01-130","00GM-01-160 FS","00GM-01-160",209,248,210,251,48,57,49,58,67,,"CCGT D1_Integrated Programme Schedule;M&E;Construction;M&E Construction;BOP;Plant Drainage (GM);(00GM-01) Plant Drainage System",4,1,0.0000010765,0.0006103764,0.0028484232,8,0.0,0.0005265786,0.0273972603,0.0030769231,0.001625,0.0015665796,0.009009009,0.0179372197,0.0,0.1824771748
1.3.1.1.8.2.4-11,00GM-01-210,"Install  Sump Pumps",7112,"CCGTD1_IPS",TT_Task,"58441",-,-,-,100,TK_Complete,01/04/2019,01/04/2019,23/05/2019,28/06/2019,"SI-GM-4B40 FS,SI0GN-4B44 FS,KD_D06 FS","SI-GM-4B40,SI0GN-4B44,KD_D06","00GM-01-250 FF,00GM-01-140 FS","00GM-01-250,00GM-01-140",191,228,199,241,44,53,46,56,50,,"CCGT D1_Integrated Programme Schedule;M&E;Construction;M&E Construction;BOP;Plant Drainage (GM);(00GM-01) Plant Drainage System",3,2,0.000000628,0.0014242116,0.0008138352,52,0.0,0.0001483938,0.0205479452,0.0061538462,0.0009479167,0.0036553525,0.0025740026,0.1165919283,0.0,0.0275166717
1.3.1.1.8.2.4-12,00GM-01-220,"Install Piping Support Steelwork at Effluent Plant",7112,"CCGTD1_IPS",TT_Task,"58441",-,-,-,100,TK_Complete,13/04/2019,13/04/2019,25/04/2019,10/07/2019,"00GM-01-190 SS","00GM-01-190","00GM-01-120 FS","00GM-01-120",193,230,195,242,45,53,45,56,54,,"CCGT D1_Integrated Programme Schedule;M&E;Construction;M&E Construction;BOP;Plant Drainage (GM);(00GM-01) Plant Drainage System",1,1,0.0000004554,0.0014242116,0.0006103764,12,0.0,0.0001102282,0.0068493151,0.0030769231,0.0006875,0.0036553525,0.0019305019,0.0269058296,0.0,0.0118783792
1.3.1.1.8.2.4-13,00GM-01-240,"Install Effluent Chemical (Caustic/Sulfuric Acid) Equipment",7112,"CCGTD1_IPS",TT_Task,"58441",-,-,-,100,TK_Complete,30/04/2019,20/05/2019,17/05/2019,27/06/2019,"KD_E01 FS","KD_E01","00GM-01-140 FF","00GM-01-140",195,235,198,240,45,54,46,56,56,,"CCGT D1_Integrated Programme Schedule;M&E;Construction;M&E Construction;BOP;Plant Drainage (GM);(00GM-01) Plant Drainage System",1,1,0.0000001518,0.0006103764,0.0004069176,17,0.0,0.0001503957,0.0068493151,0.0030769231,0.0002291667,0.0015665796,0.0012870013,0.0381165919,0.0,0.0283369572
1.3.1.1.8.2.4-14,00GM-01-190,"Install Effluent Tanks incl Stairs/Platforms - Skid",7112,"CCGTD1_IPS",TT_Task,"58441",-,-,-,100,TK_Complete,30/04/2019,13/05/2019,18/05/2019,26/06/2019,"SI0GN-4B44 FS","SI0GN-4B44","00GM-01-220 SS,00GM-01-140 FS","00GM-01-220,00GM-01-140",195,234,198,240,45,54,46,56,56,,"CCGT D1_Integrated Programme Schedule;M&E;Construction;M&E Construction;BOP;Plant Drainage (GM);(00GM-01) Plant Drainage System",1,2,0.0000004209,0.0018311292,0.0004069176,18,0.0,0.0000908143,0.0068493151,0.0061538462,0.0006354167,0.0046997389,0.0012870013,0.0403587444,0.0,0.0039235787
1.3.1.1.8.2.4-15,00GM-01-200,"Install Effluent Treatment Dispossal to Existing Station",7112,"CCGTD1_IPS",TT_Task,"58441",-,-,-,100,TK_Complete,30/10/2019,14/10/2019,09/12/2019,23/11/2019,"","","SC1300 FS","SC1300",222,256,227,262,51,59,53,61,80,,"CCGT D1_Integrated Programme Schedule;M&E;Construction;M&E Construction;BOP;Plant Drainage (GM);(00GM-01) Plant Drainage System",0,1,0.0,0.0002034588,0.0,40,1.0,0.0000812387,0.0,0.0030769231,0.0,0.0005221932,0.0,0.0896860987,1.0,0.0
1.3.1.1.8.2.5,58440,"(00GM-02) Plant Drainage System  for Surface Water",7112,"CCGTD1_IPS",WBS,"58437",,,,100,Complete,15/04/2019,15/04/2019,14/10/2019,05/11/2019,,,,,193,230,219,259,45,53,51,60,,,"CCGT D1_Integrated Programme Schedule;M&E;Construction;M&E Construction;BOP;Plant Drainage (GM)"
1.3.1.1.8.2.5-1,00GM-02-10,"Install Equipment/Skids/Pumps",7112,"CCGTD1_IPS",TT_Task,"58440",-,-,-,100,TK_Complete,15/04/2019,15/04/2019,11/05/2019,09/07/2019,"","","00GM-02-20 SS,00GM-02-40 FF","00GM-02-20,00GM-02-40",193,230,197,242,45,53,46,56,54,,"CCGT D1_Integrated Programme Schedule;M&E;Construction;M&E Construction;BOP;Plant Drainage (GM);(00GM-02) Plant Drainage System  for Surface Water",0,2,0.0,0.003051882,0.0,26,0.0,0.0000812387,0.0,0.0061538462,0.0,0.0078328982,0.0,0.0582959641,0.0,0.0
1.3.1.1.8.2.5-2,00GM-02-40,"EC+I",7112,"CCGTD1_IPS",TT_Task,"58440",-,-,-,100,TK_Complete,24/05/2019,24/05/2019,17/06/2019,21/09/2019,"00GM-02-10 FF","00GM-02-10","00GM-02-50 FS","00GM-02-50",199,236,202,253,46,55,47,59,59,,"CCGT D1_Integrated Programme Schedule;M&E;Construction;M&E Construction;BOP;Plant Drainage (GM);(00GM-02) Plant Drainage System  for Surface Water",1,1,0.0000000828,0.0022380468,0.0002034588,24,0.0,0.0001158172,0.0068493151,0.0030769231,0.000125,0.0057441253,0.0006435006,0.0538116592,0.0,0.0141684786
1.3.1.1.8.2.5-3,00GM-02-20,"Install Large Bore Pipe/Valves/Supports",7112,"CCGTD1_IPS",TT_Task,"58440",-,-,-,100,TK_Complete,30/04/2019,09/05/2019,24/05/2019,23/07/2019,"00GM-02-10 SS","00GM-02-10","00GM-02-30 FS,00GM-02-70 SS","00GM-02-30,00GM-02-70",195,233,199,244,45,54,46,57,56,,"CCGT D1_Integrated Programme Schedule;M&E;Construction;M&E Construction;BOP;Plant Drainage (GM);(00GM-02) Plant Drainage System  for Surface Water",1,2,0.0000004554,0.0026449644,0.0002034588,24,0.0,0.0001158172,0.0068493151,0.0061538462,0.0006875,0.0067885117,0.0006435006,0.0538116592,0.0,0.0141684786
1.3.1.1.8.2.5-4,00GM-02-80,"Pre-Commissioning/Flushing/Cleaning",7112,"CCGTD1_IPS",TT_Task,"58440",-,-,-,100,TK_Complete,04/10/2019,09/10/2019,14/10/2019,05/11/2019,"00GM-02-70 FF,00GM-02-60 FS","00GM-02-70,00GM-02-60","SC1230 FS,SC1240 FS","SC1230,SC1240",218,255,219,259,50,59,51,60,78,,"CCGT D1_Integrated Programme Schedule;M&E;Construction;M&E Construction;BOP;Plant Drainage (GM);(00GM-02) Plant Drainage System  for Surface Water",2,2,0.0000023186,0.0016276704,0.0014242116,10,0.0,0.0004740666,0.0136986301,0.0061538462,0.0035,0.0041775457,0.0045045045,0.0224215247,0.0,0.1609604994
1.3.1.1.8.2.5-5,00GM-02-70,"Painting/Insulation",7112,"CCGTD1_IPS",TT_Task,"58440",-,-,-,100,TK_Complete,13/05/2019,13/05/2019,11/06/2019,05/11/2019,"00GM-02-20 SS","00GM-02-20","00GM-02-80 FF","00GM-02-80",197,234,201,259,46,54,47,60,58,,"CCGT D1_Integrated Programme Schedule;M&E;Construction;M&E Construction;BOP;Plant Drainage (GM);(00GM-02) Plant Drainage System  for Surface Water",1,1,0.0000007453,0.0018311292,0.0004069176,29,0.0,0.0001372947,0.0068493151,0.0030769231,0.001125,0.0046997389,0.0012870013,0.0650224215,0.0,0.0229688237
1.3.1.1.8.2.5-6,00GM-02-30,"Install Small Bore Pipe/Valves/Supports",7112,"CCGTD1_IPS",TT_Task,"58440",-,-,-,100,TK_Complete,14/05/2019,14/05/2019,05/06/2019,24/07/2019,"00GM-02-20 FS","00GM-02-20","00GM-02-50 FF","00GM-02-50",197,234,201,244,46,54,46,57,58,,"CCGT D1_Integrated Programme Schedule;M&E;Construction;M&E Construction;BOP;Plant Drainage (GM);(00GM-02) Plant Drainage System  for Surface Water",1,1,0.0000000828,0.0022380468,0.0004069176,22,0.0,0.0001237639,0.0068493151,0.0030769231,0.000125,0.0057441253,0.0012870013,0.0493273543,0.0,0.0174246249
1.3.1.1.8.2.5-7,00GM-02-50,"Line Inspection",7112,"CCGTD1_IPS",TT_Task,"58440",-,-,-,100,TK_Complete,02/08/2019,10/08/2019,06/08/2019,17/08/2019,"00GM-02-40 FS,00GM-02-30 FF","00GM-02-40,00GM-02-30","00GM-02-60 FS","00GM-02-60",209,247,209,248,48,57,48,57,68,,"CCGT D1_Integrated Programme Schedule;M&E;Construction;M&E Construction;BOP;Plant Drainage (GM);(00GM-02) Plant Drainage System  for Surface Water",2,1,0.0000009109,0.002034588,0.0008138352,4,0.8,0.0002851758,0.0136986301,0.0030769231,0.001375,0.0052219321,0.0025740026,0.0089686099,0.8,0.0835628254
1.3.1.1.8.2.5-8,00GM-02-60,"Hydro Test",7112,"CCGTD1_IPS",TT_Task,"58440",-,-,-,100,TK_Complete,31/08/2019,28/09/2019,09/09/2019,04/10/2019,"00GM-02-50 FS","00GM-02-50","00GM-02-80 FS","00GM-02-80",213,254,214,255,49,59,50,59,70,,"CCGT D1_Integrated Programme Schedule;M&E;Construction;M&E Construction;BOP;Plant Drainage (GM);(00GM-02) Plant Drainage System  for Surface Water",1,1,0.0000011179,0.0018311292,0.001017294,9,1.0,0.0003240062,0.0068493151,0.0030769231,0.0016875,0.0046997389,0.0032175032,0.0201793722,1.0,0.0994735031
1.3.1.1.8.2.6,58439,"(00GM-03) Plant Drainage System Pump for UGD (incl. UGU)",7112,"CCGTD1_IPS",WBS,"58437",,,,100,Complete,17/04/2019,19/04/2019,21/12/2019,26/03/2020,,,,,194,231,229,279,45,53,53,65,,,"CCGT D1_Integrated Programme Schedule;M&E;Construction;M&E Construction;BOP;Plant Drainage (GM)"
1.3.1.1.8.2.6-1,00GM-03-10,"Install Equipment/Skids/Pumps",7112,"CCGTD1_IPS",TT_Task,"58439",-,-,-,100,TK_Complete,17/04/2019,19/04/2019,02/05/2019,10/07/2019,"SI0GN-4B44 FS,SI-GM-4B40 FS,KD_D06 FS,SUB-BOP-160 FS,KD_E03 FS,KD_E04 FS,KD_E05 FS,A1010 FS,KD_H03 FS","SI0GN-4B44,SI-GM-4B40,KD_D06,SUB-BOP-160,KD_E03,KD_E04,KD_E05,A1010,KD_H03","00GM-03-40 FS,00GM-03-20 FS","00GM-03-40,00GM-03-20",194,231,196,242,45,53,45,56,54,,"CCGT D1_Integrated Programme Schedule;M&E;Construction;M&E Construction;BOP;Plant Drainage (GM);(00GM-03) Plant Drainage System Pump for UGD (incl. UGU)",9,2,0.0000326884,0.0044760936,0.0120040692,15,0.0,0.0001885912,0.0616438356,0.0061538462,0.04934375,0.0114882507,0.037966538,0.033632287,0.0,0.0439874708
1.3.1.1.8.2.6-2,00GM-03-40,"EC+I",7112,"CCGTD1_IPS",TT_Task,"58439",-,-,-,100,TK_Complete,14/05/2019,14/05/2019,01/06/2019,21/09/2019,"00GM-03-10 FS","00GM-03-10","00GM-03-50 FF,00GM-03-80 FF","00GM-03-50,00GM-03-80",197,234,200,253,46,54,46,59,58,,"CCGT D1_Integrated Programme Schedule;M&E;Construction;M&E Construction;BOP;Plant Drainage (GM);(00GM-03) Plant Drainage System Pump for UGD (incl. UGU)",1,2,0.0000237658,0.0036622584,0.012207528,18,0.0,0.0001500333,0.0068493151,0.0061538462,0.035875,0.0093994778,0.0386100386,0.0403587444,0.0,0.0281884451
1.3.1.1.8.2.6-3,00GM-03-20,"Install Large Bore Pipe/Valves/Supports",7112,"CCGTD1_IPS",TT_Task,"58439",-,-,-,100,TK_Complete,14/05/2019,14/05/2019,07/06/2019,23/07/2019,"SI1--P4A40 FS,SI1--P4H40 FS,SI---P4I40 FS,00GM-03-10 FS","SI1--P4A40,SI1--P4H40,SI---P4I40,00GM-03-10","00GM-03-30 FS,00GM-03-70 FS","00GM-03-30,00GM-03-70",197,234,201,244,46,54,46,57,58,,"CCGT D1_Integrated Programme Schedule;M&E;Construction;M&E Construction;BOP;Plant Drainage (GM);(00GM-03) Plant Drainage System Pump for UGD (incl. UGU)",4,2,0.0000059622,0.0036622584,0.0128179044,24,0.0,0.0001752937,0.0273972603,0.0061538462,0.009,0.0093994778,0.0405405405,0.0538116592,0.0,0.0385388512
1.3.1.1.8.2.6-4,00GM-03-80,"Pre-Commissioning/Flushing/Cleaning",7112,"CCGTD1_IPS",TT_Task,"58439",-,-,-,100,TK_Complete,05/10/2019,12/10/2019,15/10/2019,26/03/2020,"00GM-03-70 FF,00GM-03-60 FS,00GM-03-40 FF","00GM-03-70,00GM-03-60,00GM-03-40","TOP1060 FS,00GM-03-90 FS,TOP2800 FS,TOP2810 FS,TOP2820 FS,TOP2910 FS","TOP1060,00GM-03-90,TOP2800,TOP2810,TOP2820,TOP2910",218,256,219,279,50,59,51,65,79,,"CCGT D1_Integrated Programme Schedule;M&E;Construction;M&E Construction;BOP;Plant Drainage (GM);(00GM-03) Plant Drainage System Pump for UGD (incl. UGU)",3,6,0.0000201637,0.003051882,0.0138351984,10,0.0,0.000455277,0.0205479452,0.0184615385,0.0304375,0.0078328982,0.0437580438,0.0224215247,0.0,0.1532614758
1.3.1.1.8.2.6-5,00GM-03-60,"Hydro Test",7112,"CCGTD1_IPS",TT_Task,"58439",-,-,-,100,TK_Complete,02/09/2019,28/09/2019,12/09/2019,05/10/2019,"00GM-03-50 FS","00GM-03-50","00GM-03-80 FS","00GM-03-80",213,254,215,255,49,59,50,59,74,,"CCGT D1_Integrated Programme Schedule;M&E;Construction;M&E Construction;BOP;Plant Drainage (GM);(00GM-03) Plant Drainage System Pump for UGD (incl. UGU)",1,1,0.0000006625,0.0032553408,0.0126144456,10,1.0,0.0001951885,0.0068493151,0.0030769231,0.001,0.0083550914,0.0398970399,0.0224215247,1.0,0.046690702
1.3.1.1.8.2.6-6,00GM-03-70,"Painting/Insulation",7112,"CCGTD1_IPS",TT_Task,"58439",-,-,-,100,TK_Complete,08/06/2019,21/05/2019,20/06/2019,26/03/2020,"00GM-03-20 FS","00GM-03-20","00GM-03-80 FF","00GM-03-80",201,235,203,279,47,54,47,65,62,,"CCGT D1_Integrated Programme Schedule;M&E;Construction;M&E Construction;BOP;Plant Drainage (GM);(00GM-03) Plant Drainage System Pump for UGD (incl. UGU)",1,1,0.0000015319,0.0032553408,0.0130213632,12,0.0,0.0001558629,0.0068493151,0.0030769231,0.0023125,0.0083550914,0.0411840412,0.0269058296,0.0,0.0305771141
1.3.1.1.8.2.6-7,00GM-03-30,"Install Small Bore Pipe/Valves/Supports",7112,"CCGTD1_IPS",TT_Task,"58439",-,-,-,100,TK_Complete,07/06/2019,21/05/2019,19/06/2019,25/07/2019,"00GM-03-20 FS,SI1--P4A40 FS,SI1--P4H40 FS","00GM-03-20,SI1--P4A40,SI1--P4H40","","",201,235,203,244,46,54,47,57,62,,"CCGT D1_Integrated Programme Schedule;M&E;Construction;M&E Construction;BOP;Plant Drainage (GM);(00GM-03) Plant Drainage System Pump for UGD (incl. UGU)",3,0,0.0,0.0,0.0130213632,12,0.0,0.0001564759,0.0205479452,0.0,0.0,0.0,0.0411840412,0.0269058296,0.0,0.0308283004
1.3.1.1.8.2.6-8,00GM-03-50,"Line Inspection",7112,"CCGTD1_IPS",TT_Task,"58439",-,-,-,100,TK_Complete,31/07/2019,10/07/2019,07/08/2019,24/08/2019,"00GM-03-40 FF","00GM-03-40","00GM-03-60 FS","00GM-03-60",209,242,210,249,48,56,49,58,67,,"CCGT D1_Integrated Programme Schedule;M&E;Construction;M&E Construction;BOP;Plant Drainage (GM);(00GM-03) Plant Drainage System Pump for UGD (incl. UGU)",1,1,0.0000025256,0.0034587996,0.0124109868,7,0.0,0.0001338372,0.0068493151,0.0030769231,0.0038125,0.0088772846,0.0392535393,0.0156950673,0.0,0.0215521353
1.3.1.1.8.2.6-9,00GM-03-90,"Assumption Underground System Available",7112,"CCGTD1_IPS",TT_FinMile,"58439",-,-,-,100,TK_Complete,21/12/2019,22/11/2019,21/12/2019,22/11/2019,"00GM-03-80 FS","00GM-03-80","","",229,262,229,262,53,61,53,61,86,,"CCGT D1_Integrated Programme Schedule;M&E;Construction;M&E Construction;BOP;Plant Drainage (GM);(00GM-03) Plant Drainage System Pump for UGD (incl. UGU)",1,0,0.0,0.0,0.0140386572,0,1.0,0.0000812387,0.0068493151,0.0,0.0,0.0,0.0444015444,0.0,1.0,0.0
1.3.1.1.8.2.7,58438,"(10GM-02) Plant Drainage System for 10U MC",7112,"CCGTD1_IPS",WBS,"58437",,,,100,Complete,01/04/2019,10/04/2019,07/11/2019,04/11/2019,,,,,191,229,223,259,44,53,52,60,,,"CCGT D1_Integrated Programme Schedule;M&E;Construction;M&E Construction;BOP;Plant Drainage (GM)"
1.3.1.1.8.2.7-1,10GM-02-20,"Erection of Oil Separator Pumps GM - Skid",7112,"CCGTD1_IPS",TT_Task,"58438",-,-,-,100,TK_Complete,07/06/2019,07/06/2019,17/06/2019,20/07/2019,"KD_D07 FS,10GM-02-10 FS","KD_D07,10GM-02-10","10GM-02-50 FS","10GM-02-50",201,238,202,244,46,55,47,56,62,,"CCGT D1_Integrated Programme Schedule;M&E;Construction;M&E Construction;BOP;Plant Drainage (GM);(10GM-02) Plant Drainage System for 10U MC",2,1,0.0000003882,0.0016276704,0.0014242116,10,0.0,0.000171177,0.0136986301,0.0030769231,0.0005859375,0.0041775457,0.0045045045,0.0224215247,0.0,0.0368520254
1.3.1.1.8.2.7-2,10GM-02-10,"Install Equipment/Skids/Pumps",7112,"CCGTD1_IPS",TT_Task,"58438",-,-,-,100,TK_Complete,01/04/2019,10/04/2019,15/04/2019,17/07/2019,"SI0GN-4B44 FS,KD_D06 FS,SI-GM-4B40 FS,KD_F02 FS","SI0GN-4B44,KD_D06,SI-GM-4B40,KD_F02","10GM-02-20 FS,10GM-02-30 FS,10GM-02-50 FS","10GM-02-20,10GM-02-30,10GM-02-50",191,229,193,243,44,53,45,56,50,,"CCGT D1_Integrated Programme Schedule;M&E;Construction;M&E Construction;BOP;Plant Drainage (GM);(10GM-02) Plant Drainage System for 10U MC",4,3,0.0000019201,0.0024415056,0.001017294,14,0.0,0.000168476,0.0273972603,0.0092307692,0.0028984375,0.0062663185,0.0032175032,0.0313901345,0.0,0.0357452919
1.3.1.1.8.2.7-3,10GM-02-50,"E&IC of Oil Separator Pumps GM",7112,"CCGTD1_IPS",TT_Task,"58438",-,-,-,100,TK_Complete,25/05/2019,25/05/2019,13/06/2019,07/08/2019,"10GM-02-20 FS,10GM-02-10 FS","10GM-02-20,10GM-02-10","10GM-02-60 FF,10GM-02-90 FS","10GM-02-60,10GM-02-90",199,236,202,246,46,55,47,57,59,,"CCGT D1_Integrated Programme Schedule;M&E;Construction;M&E Construction;BOP;Plant Drainage (GM);(10GM-02) Plant Drainage System for 10U MC",2,2,0.000001977,0.0014242116,0.0016276704,19,0.0,0.0002664226,0.0136986301,0.0061538462,0.002984375,0.0036553525,0.0051480051,0.0426008969,0.0,0.0758787273
1.3.1.1.8.2.7-4,10GM-02-30,"Install Large Bore Pipe/Valves/Supports",7112,"CCGTD1_IPS",TT_Task,"58438",-,-,-,100,TK_Complete,15/04/2019,15/04/2019,25/05/2019,03/08/2019,"SI1--P4A40 FS,SI1--P4H40 FS,10GM-02-10 FS,SI---P4I40 FS","SI1--P4A40,SI1--P4H40,10GM-02-10,SI---P4I40","10GM-02-40 SS","10GM-02-40",193,230,199,246,45,53,46,57,54,,"CCGT D1_Integrated Programme Schedule;M&E;Construction;M&E Construction;BOP;Plant Drainage (GM);(10GM-02) Plant Drainage System for 10U MC",4,1,0.0000007246,0.0018311292,0.0018311292,40,0.0,0.0001682451,0.0273972603,0.0030769231,0.00109375,0.0046997389,0.0057915058,0.0896860987,0.0,0.0356507023
1.3.1.1.8.2.7-5,10GM-02-90,"Pre-Commissioning/Flushing/Cleaning",7112,"CCGTD1_IPS",TT_Task,"58438",-,-,-,100,TK_Complete,31/10/2019,10/10/2019,07/11/2019,04/11/2019,"10GM-02-50 FS,10GM-02-80 FS,10GM-02-70 FS","10GM-02-50,10GM-02-80,10GM-02-70","TOP1890 FS,TOP1090 FS","TOP1890,TOP1090",222,255,223,259,51,59,52,60,80,,"CCGT D1_Integrated Programme Schedule;M&E;Construction;M&E Construction;BOP;Plant Drainage (GM);(10GM-02) Plant Drainage System for 10U MC",3,2,0.0000024428,0.0008138352,0.0034587996,7,0.0,0.0006350221,0.0205479452,0.0061538462,0.0036875,0.0020887728,0.0109395109,0.0156950673,0.0,0.2269116965
1.3.1.1.8.2.7-6,10GM-02-70,"Hydro Test",7112,"CCGTD1_IPS",TT_Task,"58438",-,-,-,100,TK_Complete,03/09/2019,25/09/2019,10/09/2019,05/10/2019,"10GM-02-60 FS","10GM-02-60","10GM-02-90 FS","10GM-02-90",213,253,214,255,49,59,50,59,75,,"CCGT D1_Integrated Programme Schedule;M&E;Construction;M&E Construction;BOP;Plant Drainage (GM);(10GM-02) Plant Drainage System for 10U MC",1,1,0.000000207,0.001017294,0.003051882,7,0.8,0.0002854892,0.0068493151,0.0030769231,0.0003125,0.0026109661,0.0096525097,0.0156950673,0.8,0.083691241
1.3.1.1.8.2.7-7,10GM-02-80,"Painting/Insulation",7112,"CCGTD1_IPS",TT_Task,"58438",-,-,-,100,TK_Complete,25/05/2019,15/05/2019,04/06/2019,31/10/2019,"10GM-02-40 FS","10GM-02-40","10GM-02-90 FS","10GM-02-90",199,234,200,258,46,54,46,60,59,,"CCGT D1_Integrated Programme Schedule;M&E;Construction;M&E Construction;BOP;Plant Drainage (GM);(10GM-02) Plant Drainage System for 10U MC",1,1,0.0000009212,0.001017294,0.0022380468,10,0.0,0.0002093623,0.0068493151,0.0030769231,0.001390625,0.0026109661,0.0070785071,0.0224215247,0.0,0.052498378
1.3.1.1.8.2.7-8,10GM-02-40,"Install Small Bore Pipe/Valves/Supports",7112,"CCGTD1_IPS",TT_Task,"58438",-,-,-,100,TK_Complete,30/04/2019,08/05/2019,24/05/2019,03/08/2019,"SI1--P4A40 FS,10GM-02-30 SS,SI1--P4H40 FS","SI1--P4A40,10GM-02-30,SI1--P4H40","10GM-02-60 FS,10GM-02-80 FS","10GM-02-60,10GM-02-80",195,233,199,246,45,54,46,57,56,,"CCGT D1_Integrated Programme Schedule;M&E;Construction;M&E Construction;BOP;Plant Drainage (GM);(10GM-02) Plant Drainage System for 10U MC",3,2,0.0000015423,0.0016276704,0.002034588,24,0.0,0.0002257014,0.0205479452,0.0061538462,0.002328125,0.0041775457,0.0064350064,0.0538116592,0.0,0.0591933171
1.3.1.1.8.2.7-9,10GM-02-60,"Line Inspection",7112,"CCGTD1_IPS",TT_Task,"58438",-,-,-,100,TK_Complete,01/08/2019,24/08/2019,06/08/2019,03/09/2019,"10GM-02-50 FF,10GM-02-40 FS","10GM-02-50,10GM-02-40","10GM-02-70 FS","10GM-02-70",209,249,209,250,48,58,48,58,67,,"CCGT D1_Integrated Programme Schedule;M&E;Construction;M&E Construction;BOP;Plant Drainage (GM);(10GM-02) Plant Drainage System for 10U MC",2,1,0.0000005797,0.0012207528,0.0028484232,5,0.4,0.000239817,0.0136986301,0.0030769231,0.000875,0.0031331593,0.009009009,0.0112107623,0.4,0.0649771304
1.3.1.1.8.3,58430,"Steam Systems (LB)",7112,"CCGTD1_IPS",WBS,"58429",,,,100,Complete,06/11/2018,18/10/2018,30/10/2019,15/11/2019,,,,,170,204,222,261,39,47,51,60,,,"CCGT D1_Integrated Programme Schedule;M&E;Construction;M&E Construction;BOP"
1.3.1.1.8.3-1,PMS14.1020,"Installation Aux. System Pipe Racks (UMCM1Y Modules)",7112,"CCGTD1_IPS",TT_Task,"58430",-,-,-,100,TK_Complete,06/11/2018,18/10/2018,07/12/2018,20/11/2018,"SI1UMC4X40 FS","SI1UMC4X40","SC1140 FS,10MKF20 SS,10PGB1020 FS,SC1170 FS,10MKQ20 FS,10MAX20 FS,10MBA4x20 FS,10MBU10 FS","SC1140,10MKF20,10PGB1020,SC1170,10MKQ20,10MAX20,10MBA4x20,10MBU10",170,204,175,209,39,47,40,48,38,,"CCGT D1_Integrated Programme Schedule;M&E;Construction;M&E Construction;BOP;Steam Systems (LB)",1,8,0.0000045061,0.0219735504,0.0004069176,31,0.8,0.0001503957,0.0068493151,0.0246153846,0.0068020833,0.0563968668,0.0012870013,0.0695067265,0.8,0.0283369572
1.3.1.1.8.3-2,PMS14.1050,"Installation Water System Pipe Racks (UMCL1Y Modules)",7112,"CCGTD1_IPS",TT_Task,"58430",-,-,-,100,TK_Complete,12/02/2019,21/01/2019,22/02/2019,11/05/2019,"SI1UMC4Y40 FS,KD_C17 FS","SI1UMC4Y40,KD_C17","10LAC20 FS,SC1140 FS,SC1170 FS","10LAC20,SC1140,SC1170",184,218,186,234,43,50,43,54,47,,"CCGT D1_Integrated Programme Schedule;M&E;Construction;M&E Construction;BOP;Steam Systems (LB)",2,3,0.0000018149,0.0046795524,0.0006103764,10,0.0,0.0001514158,0.0136986301,0.0092307692,0.0027395833,0.0120104439,0.0019305019,0.0224215247,0.0,0.0287549064
1.3.1.1.8.3.1,58436,"(00LBG) Auxiliary Steam System Common Area",7112,"CCGTD1_IPS",WBS,"58430",,,,100,Complete,01/04/2019,08/04/2019,25/10/2019,06/11/2019,,,,,191,229,221,259,44,53,51,60,,,"CCGT D1_Integrated Programme Schedule;M&E;Construction;M&E Construction;BOP;Steam Systems (LB)"
1.3.1.1.8.3.1-1,00LBG20,"Install Large Bore Pipe/Valves/Supports",7112,"CCGTD1_IPS",TT_Task,"58436",-,-,-,100,TK_Complete,15/04/2019,15/04/2019,12/06/2019,07/09/2019,"00LBG10 FS,SI---P4I40 FS,A2380 FS,SI1--P4A40 FS,SI1--P4H40 FS","00LBG10,SI---P4I40,A2380,SI1--P4A40,SI1--P4H40","00LBG30 FS,00LBG40 SS,00LBG80 FS,00LBG50 FF","00LBG30,00LBG40,00LBG80,00LBG50",193,230,202,251,45,53,47,58,54,,"CCGT D1_Integrated Programme Schedule;M&E;Construction;M&E Construction;BOP;Steam Systems (LB);(00LBG) Auxiliary Steam System Common Area",5,4,0.0000043888,0.0036622584,0.0024415056,58,0.0,0.000167556,0.0342465753,0.0123076923,0.006625,0.0093994778,0.0077220077,0.130044843,0.0,0.0353683616
1.3.1.1.8.3.1-2,00LBG80,"Insulation",7112,"CCGTD1_IPS",TT_Task,"58436",-,-,-,100,TK_Complete,09/07/2019,15/06/2019,01/08/2019,06/11/2019,"00LBG20 FS","00LBG20","00LBG90 FF","00LBG90",205,239,209,259,48,55,48,60,65,,"CCGT D1_Integrated Programme Schedule;M&E;Construction;M&E Construction;BOP;Steam Systems (LB);(00LBG) Auxiliary Steam System Common Area",1,1,0.0000009523,0.0024415056,0.0026449644,23,0.0,0.0001137155,0.0068493151,0.0030769231,0.0014375,0.0062663185,0.0083655084,0.0515695067,0.0,0.0133073087
1.3.1.1.8.3.1-3,00LBG50,"EC+I",7112,"CCGTD1_IPS",TT_Task,"58436",-,-,-,100,TK_Complete,18/06/2019,17/05/2019,18/07/2019,26/09/2019,"00LBG20 FF","00LBG20","00LBG90 FS","00LBG90",202,235,207,253,47,54,48,59,63,,"CCGT D1_Integrated Programme Schedule;M&E;Construction;M&E Construction;BOP;Steam Systems (LB);(00LBG) Auxiliary Steam System Common Area",1,1,0.0000009523,0.0024415056,0.0026449644,30,0.0,0.0001235998,0.0068493151,0.0030769231,0.0014375,0.0062663185,0.0083655084,0.067264574,0.0,0.0173573591
1.3.1.1.8.3.1-4,00LBG30,"Install Small Bore Pipe/Valves/Supports",7112,"CCGTD1_IPS",TT_Task,"58436",-,-,-,100,TK_Complete,31/05/2019,15/05/2019,29/06/2019,07/09/2019,"00LBG20 FS","00LBG20","00LBG40 FF","00LBG40",200,234,204,251,46,54,47,58,60,,"CCGT D1_Integrated Programme Schedule;M&E;Construction;M&E Construction;BOP;Steam Systems (LB);(00LBG) Auxiliary Steam System Common Area",1,1,0.0,0.003051882,0.0026449644,29,0.0,0.0001221877,0.0068493151,0.0030769231,0.0,0.0078328982,0.0083655084,0.0650224215,0.0,0.0167787805
1.3.1.1.8.3.1-5,00LBG40,"NDE",7112,"CCGTD1_IPS",TT_Task,"58436",-,-,-,100,TK_Complete,22/06/2019,08/06/2019,11/07/2019,21/09/2019,"00LBG20 SS,00LBG30 FF","00LBG20,00LBG30","00LBG60 FF","00LBG60",203,238,206,253,47,55,48,59,64,,"CCGT D1_Integrated Programme Schedule;M&E;Construction;M&E Construction;BOP;Steam Systems (LB);(00LBG) Auxiliary Steam System Common Area",2,1,0.0000016562,0.0028484232,0.0028484232,19,0.0,0.0002120917,0.0136986301,0.0030769231,0.0025,0.007310705,0.009009009,0.0426008969,0.0,0.0536167739
1.3.1.1.8.3.1-6,00LBG60,"Line Inspection",7112,"CCGTD1_IPS",TT_Task,"58436",-,-,-,100,TK_Complete,31/07/2019,10/08/2019,10/08/2019,02/09/2019,"00LBG40 FF","00LBG40","00LBG70 FS","00LBG70",209,247,210,250,48,57,49,58,67,,"CCGT D1_Integrated Programme Schedule;M&E;Construction;M&E Construction;BOP;Steam Systems (LB);(00LBG) Auxiliary Steam System Common Area",1,1,0.0000016148,0.0026449644,0.003051882,10,0.0,0.0002618064,0.0068493151,0.0030769231,0.0024375,0.0067885117,0.0096525097,0.0224215247,0.0,0.0739872499
1.3.1.1.8.3.1-7,00LBG70,"Hydro Test",7112,"CCGTD1_IPS",TT_Task,"58436",-,-,-,100,TK_Complete,30/09/2019,07/10/2019,12/10/2019,11/10/2019,"00LBG60 FS","00LBG60","00LBG90 FS","00LBG90",217,255,219,256,50,59,51,59,78,,"CCGT D1_Integrated Programme Schedule;M&E;Construction;M&E Construction;BOP;Steam Systems (LB);(00LBG) Auxiliary Steam System Common Area",1,1,0.0000014905,0.0024415056,0.0032553408,12,1.0,0.0003041931,0.0068493151,0.0030769231,0.00225,0.0062663185,0.0102960103,0.0269058296,1.0,0.0913551265
1.3.1.1.8.3.1-8,00LBG90,"Pre-Commissioning/Flushing/Cleaning",7112,"CCGTD1_IPS",TT_Task,"58436",-,-,-,100,TK_Complete,14/10/2019,12/10/2019,25/10/2019,06/11/2019,"00LBG50 FS,00LBG70 FS,00LBG80 FF","00LBG50,00LBG70,00LBG80","TOP1880 FS","TOP1880",219,256,221,259,51,59,51,60,79,,"CCGT D1_Integrated Programme Schedule;M&E;Construction;M&E Construction;BOP;Steam Systems (LB);(00LBG) Auxiliary Steam System Common Area",3,1,0.000004099,0.0022380468,0.0038657172,11,0.0,0.000542355,0.0205479452,0.0030769231,0.0061875,0.0057441253,0.0122265122,0.0246636771,0.0,0.1889415138
1.3.1.1.8.3.1-9,00LBG10,"Install Equipment/Skids/Pumps",7112,"CCGTD1_IPS",TT_Task,"58436",-,-,-,100,TK_Complete,01/04/2019,08/04/2019,04/04/2019,11/06/2019,"A1010 FS,10MKB90 FS","A1010,10MKB90","00LBG20 FS","00LBG20",191,229,192,238,44,53,44,55,50,,"CCGT D1_Integrated Programme Schedule;M&E;Construction;M&E Construction;BOP;Steam Systems (LB);(00LBG) Auxiliary Steam System Common Area",2,1,0.0000008384,0.0038657172,0.0006103764,3,0.0,0.000082527,0.0136986301,0.0030769231,0.001265625,0.009921671,0.0019305019,0.0067264574,0.0,0.0005278587
1.3.1.1.8.3.2,58435,"(00LBG) Auxiliary Steam System Power Island",7112,"CCGTD1_IPS",WBS,"58430",,,,100,Complete,01/04/2019,04/04/2019,24/10/2019,08/11/2019,,,,,191,228,221,260,44,53,51,60,,,"CCGT D1_Integrated Programme Schedule;M&E;Construction;M&E Construction;BOP;Steam Systems (LB)"
1.3.1.1.8.3.2-1,10LBG20,"Install Large Bore Pipe/Valves/Supports",7112,"CCGTD1_IPS",TT_Task,"58435",-,-,-,100,TK_Complete,01/04/2019,04/04/2019,04/05/2019,25/07/2019,"A2380 FS,SI---P4I40 FS,KD_C17 FS,10MKB90 FS","A2380,SI---P4I40,KD_C17,10MKB90","10LBG80 FS,10LBG50 FS,10LBG30 FS,10LBG40 FF,10LBG90 FS","10LBG80,10LBG50,10LBG30,10LBG40,10LBG90",191,228,196,244,44,53,45,57,50,,"CCGT D1_Integrated Programme Schedule;M&E;Construction;M&E Construction;BOP;Steam Systems (LB);(00LBG) Auxiliary Steam System Power Island",4,5,0.0000058255,0.004069176,0.0018311292,33,0.0,0.0001046436,0.0273972603,0.0153846154,0.00879375,0.0104438642,0.0057915058,0.0739910314,0.0,0.0095901185
1.3.1.1.8.3.2-2,10LBG80,"Insulation",7112,"CCGTD1_IPS",TT_Task,"58435",-,-,-,100,TK_Complete,24/06/2019,14/06/2019,12/07/2019,08/11/2019,"10LBG20 FS,10LBG30 FS","10LBG20,10LBG30","10LBG90 FS","10LBG90",203,239,206,260,47,55,48,60,64,,"CCGT D1_Integrated Programme Schedule;M&E;Construction;M&E Construction;BOP;Steam Systems (LB);(00LBG) Auxiliary Steam System Power Island",2,1,0.0000005797,0.0028484232,0.0022380468,18,0.0,0.0001417081,0.0136986301,0.0030769231,0.000875,0.007310705,0.0070785071,0.0403587444,0.0,0.0247772288
1.3.1.1.8.3.2-3,10LBG50,"EC+I",7112,"CCGTD1_IPS",TT_Task,"58435",-,-,-,100,TK_Complete,24/05/2019,24/05/2019,21/06/2019,26/09/2019,"10LBG20 FS","10LBG20","10LBG90 FS","10LBG90",199,236,203,253,46,55,47,59,59,,"CCGT D1_Integrated Programme Schedule;M&E;Construction;M&E Construction;BOP;Steam Systems (LB);(00LBG) Auxiliary Steam System Power Island",1,1,0.0,0.0028484232,0.002034588,28,0.0,0.0001061805,0.0068493151,0.0030769231,0.0,0.007310705,0.0064350064,0.0627802691,0.0,0.0102198524
1.3.1.1.8.3.2-4,10LBG30,"Install Small Bore Pipe/Valves/Supports",7112,"CCGTD1_IPS",TT_Task,"58435",-,-,-,100,TK_Complete,24/05/2019,24/05/2019,19/06/2019,26/07/2019,"10LBG20 FS","10LBG20","10LBG40 FS,10LBG80 FS","10LBG40,10LBG80",199,236,203,245,46,55,47,57,59,,"CCGT D1_Integrated Programme Schedule;M&E;Construction;M&E Construction;BOP;Steam Systems (LB);(00LBG) Auxiliary Steam System Power Island",1,2,0.0,0.0036622584,0.002034588,26,0.0,0.000104399,0.0068493151,0.0061538462,0.0,0.0093994778,0.0064350064,0.0582959641,0.0,0.0094898629
1.3.1.1.8.3.2-5,10LBG40,"NDE",7112,"CCGTD1_IPS",TT_Task,"58435",-,-,-,100,TK_Complete,08/06/2019,09/05/2019,26/06/2019,20/09/2019,"10LBG30 FS,10LBG20 FF","10LBG30,10LBG20","10LBG60 FF","10LBG60",201,233,204,253,47,54,47,59,62,,"CCGT D1_Integrated Programme Schedule;M&E;Construction;M&E Construction;BOP;Steam Systems (LB);(00LBG) Auxiliary Steam System Power Island",2,1,0.0000009109,0.0032553408,0.0022380468,18,0.0,0.0001417081,0.0136986301,0.0030769231,0.001375,0.0083550914,0.0070785071,0.0403587444,0.0,0.0247772288
1.3.1.1.8.3.2-6,10LBG60,"Line Inspection",7112,"CCGTD1_IPS",TT_Task,"58435",-,-,-,100,TK_Complete,31/07/2019,10/08/2019,10/08/2019,31/08/2019,"10LBG40 FF","10LBG40","10LBG70 FS","10LBG70",209,247,210,250,48,57,49,58,67,,"CCGT D1_Integrated Programme Schedule;M&E;Construction;M&E Construction;BOP;Steam Systems (LB);(00LBG) Auxiliary Steam System Power Island",1,1,0.0000010765,0.003051882,0.0024415056,10,0.0,0.0002018671,0.0068493151,0.0030769231,0.001625,0.0078328982,0.0077220077,0.0224215247,0.0,0.0494272534
1.3.1.1.8.3.2-7,10LBG70,"Hydro Test",7112,"CCGTD1_IPS",TT_Task,"58435",-,-,-,100,TK_Complete,30/09/2019,07/10/2019,12/10/2019,10/10/2019,"10LBG60 FS","10LBG60","10LBG90 FS","10LBG90",217,255,219,255,50,59,51,59,77,,"CCGT D1_Integrated Programme Schedule;M&E;Construction;M&E Construction;BOP;Steam Systems (LB);(00LBG) Auxiliary Steam System Power Island",1,1,0.0000011593,0.0028484232,0.0026449644,12,1.0,0.0002531025,0.0068493151,0.0030769231,0.00175,0.007310705,0.0083655084,0.0269058296,1.0,0.0704208607
1.3.1.1.8.3.2-8,10LBG90,"Pre-Commissioning/Flushing/Cleaning",7112,"CCGTD1_IPS",TT_Task,"58435",-,-,-,100,TK_Complete,14/10/2019,12/10/2019,24/10/2019,08/11/2019,"10LBG80 FS,10LBG70 FS,10LBG50 FS,10LBG20 FS","10LBG80,10LBG70,10LBG50,10LBG20","TOP2080 FS,TOP2760 FS","TOP2080,TOP2760",219,256,221,260,51,59,51,60,79,,"CCGT D1_Integrated Programme Schedule;M&E;Construction;M&E Construction;BOP;Steam Systems (LB);(00LBG) Auxiliary Steam System Power Island",4,2,0.0000069848,0.0026449644,0.0032553408,10,0.0,0.0005166974,0.0273972603,0.0061538462,0.01054375,0.0067885117,0.0102960103,0.0224215247,0.0,0.1784283703
1.3.1.1.8.3.3,58434,"(10LBC) Cold Reheat System 10LBC",7112,"CCGTD1_IPS",WBS,"58430",,,,100,Complete,18/02/2019,14/01/2019,11/10/2019,04/11/2019,,,,,185,217,219,259,43,50,51,60,,,"CCGT D1_Integrated Programme Schedule;M&E;Construction;M&E Construction;BOP;Steam Systems (LB)"
1.3.1.1.8.3.3-1,10LBC50,"EC+I",7112,"CCGTD1_IPS",TT_Task,"58434",-,-,-,100,TK_Complete,18/05/2019,18/05/2019,22/06/2019,25/09/2019,"10LBC20 FS","10LBC20","10LBC90 FS","10LBC90",198,235,203,253,46,54,47,59,59,,"CCGT D1_Integrated Programme Schedule;M&E;Construction;M&E Construction;BOP;Steam Systems (LB);(10LBC) Cold Reheat System 10LBC",1,1,0.0000006735,0.0024415056,0.0022380468,35,0.0,0.0001083188,0.0068493151,0.0030769231,0.0010166667,0.0062663185,0.0070785071,0.0784753363,0.0,0.0110960254
1.3.1.1.8.3.3-2,10LBC65,"Neutral Float of LBC and FInal Weld to Turbine Stop Valve",7112,"CCGTD1_IPS",TT_Task,"58434",-,-,-,100,TK_Complete,09/08/2019,24/08/2019,15/08/2019,28/08/2019,"10LBC60 FS","10LBC60","10LBC70 FS","10LBC70",210,249,211,249,49,58,49,58,69,,"CCGT D1_Integrated Programme Schedule;M&E;Construction;M&E Construction;BOP;Steam Systems (LB);(10LBC) Cold Reheat System 10LBC",1,1,0.0,0.0028484232,0.003051882,6,1.0,0.0002517076,0.0068493151,0.0030769231,0.0,0.007310705,0.0096525097,0.0134529148,1.0,0.0698493002
1.3.1.1.8.3.3-3,10LBC55,"Insulation of Pipework Prior to Neutral Float",7112,"CCGTD1_IPS",TT_Task,"58434",-,-,-,100,TK_Complete,17/06/2019,17/06/2019,28/06/2019,28/09/2019,"10LBC20 FS,10LBC30 FF","10LBC20,10LBC30","10LBC60 FS","10LBC60",202,239,204,254,47,55,47,59,63,,"CCGT D1_Integrated Programme Schedule;M&E;Construction;M&E Construction;BOP;Steam Systems (LB);(10LBC) Cold Reheat System 10LBC",2,1,0.0000010144,0.0032553408,0.0024415056,11,0.0,0.0001113371,0.0136986301,0.0030769231,0.00153125,0.0083550914,0.0077220077,0.0246636771,0.0,0.0123327422
1.3.1.1.8.3.3-4,10LBC20,"Install Large Bore Pipe/Valves/Supports",7112,"CCGTD1_IPS",TT_Task,"58434",-,-,-,100,TK_Complete,18/02/2019,14/01/2019,27/04/2019,05/09/2019,"A2380 FS,KD_E03 FS,KD_E04 FS,KD_E05 FS,A1010 FS,KD_C17 FS","A2380,KD_E03,KD_E04,KD_E05,A1010,KD_C17","10LBC80 FS,10LBC40 SS,10LBC30 FS,10LBC55 FS,10LBC50 FS","10LBC80,10LBC40,10LBC30,10LBC55,10LBC50",185,217,195,250,43,50,45,58,47,,"CCGT D1_Integrated Programme Schedule;M&E;Construction;M&E Construction;BOP;Steam Systems (LB);(10LBC) Cold Reheat System 10LBC",6,5,0.0000041625,0.004069176,0.002034588,68,0.0,0.0001190701,0.0410958904,0.0153846154,0.0062833333,0.0104438642,0.0064350064,0.1524663677,0.0,0.0155013187
1.3.1.1.8.3.3-5,10LBC80,"Insulation of Neutral Float Weld",7112,"CCGTD1_IPS",TT_Task,"58434",-,-,-,100,TK_Complete,05/10/2019,05/10/2019,11/10/2019,31/10/2019,"10LBC20 FS,10LBC70 FS","10LBC20,10LBC70","10LBC90 FF","10LBC90",218,255,219,258,50,59,51,60,78,,"CCGT D1_Integrated Programme Schedule;M&E;Construction;M&E Construction;BOP;Steam Systems (LB);(10LBC) Cold Reheat System 10LBC",2,1,0.0000036546,0.0024415056,0.0034587996,6,0.0,0.0004344951,0.0136986301,0.0030769231,0.0055166667,0.0062663185,0.0109395109,0.0134529148,0.0,0.144746115
1.3.1.1.8.3.3-6,10LBC30,"Install Small Bore Pipe/Valves/Supports",7112,"CCGTD1_IPS",TT_Task,"58434",-,-,-,100,TK_Complete,30/04/2019,15/05/2019,10/06/2019,07/09/2019,"10LBC20 FS","10LBC20","10LBC40 FF,10LBC55 FF","10LBC40,10LBC55",195,234,201,251,45,54,47,58,56,,"CCGT D1_Integrated Programme Schedule;M&E;Construction;M&E Construction;BOP;Steam Systems (LB);(10LBC) Cold Reheat System 10LBC",1,2,0.0,0.0036622584,0.0022380468,41,0.0,0.0001129611,0.0068493151,0.0061538462,0.0,0.0093994778,0.0070785071,0.0919282511,0.0,0.0129982012
1.3.1.1.8.3.3-7,10LBC90,"Pre-Commissioning/Flushing/Cleaning",7112,"CCGTD1_IPS",TT_Task,"58434",-,-,-,100,TK_Complete,05/10/2019,26/10/2019,11/10/2019,04/11/2019,"10LBC80 FF,10LBC50 FS","10LBC80,10LBC50","TOP2070 FS","TOP2070",218,258,219,259,50,60,51,60,79,,"CCGT D1_Integrated Programme Schedule;M&E;Construction;M&E Construction;BOP;Steam Systems (LB);(10LBC) Cold Reheat System 10LBC",2,1,0.0000045351,0.0022380468,0.0038657172,6,0.6,0.0005435909,0.0136986301,0.0030769231,0.0068458333,0.0057441253,0.0122265122,0.0134529148,0.6,0.1894479321
1.3.1.1.8.3.3-8,10LBC40,"NDE",7112,"CCGTD1_IPS",TT_Task,"58434",-,-,-,100,TK_Complete,03/05/2019,03/05/2019,10/06/2019,25/09/2019,"10LBC20 SS,10LBC30 FF","10LBC20,10LBC30","10LBC60 FS","10LBC60",196,233,201,253,45,54,47,59,57,,"CCGT D1_Integrated Programme Schedule;M&E;Construction;M&E Construction;BOP;Steam Systems (LB);(10LBC) Cold Reheat System 10LBC",2,1,0.0000010144,0.0032553408,0.0024415056,38,0.0,0.0001852148,0.0136986301,0.0030769231,0.00153125,0.0083550914,0.0077220077,0.0852017937,0.0,0.0426040186
1.3.1.1.8.3.3-9,10LBC60,"Line Inspection & Preparation for Neutral Float",7112,"CCGTD1_IPS",TT_Task,"58434",-,-,-,100,TK_Complete,05/08/2019,03/08/2019,09/08/2019,28/08/2019,"10LBC55 FS,10LBC40 FS","10LBC55,10LBC40","10LBC65 FS,10LBC70 FS","10LBC65,10LBC70",209,246,210,249,48,57,49,58,69,,"CCGT D1_Integrated Programme Schedule;M&E;Construction;M&E Construction;BOP;Steam Systems (LB);(10LBC) Cold Reheat System 10LBC",2,2,0.0000027741,0.003051882,0.0028484232,4,0.0,0.0003336894,0.0136986301,0.0061538462,0.0041875,0.0078328982,0.009009009,0.0089686099,0.0,0.1034412023
1.3.1.1.8.3.3-10,10LBC70,"Hydro Test",7112,"CCGTD1_IPS",TT_Task,"58434",-,-,-,100,TK_Complete,30/09/2019,18/10/2019,04/10/2019,25/10/2019,"10LBC65 FS,10LBC60 FS","10LBC65,10LBC60","10LBC80 FS","10LBC80",217,257,218,258,50,59,50,60,77,,"CCGT D1_Integrated Programme Schedule;M&E;Construction;M&E Construction;BOP;Steam Systems (LB);(10LBC) Cold Reheat System 10LBC",2,1,0.0000026913,0.0026449644,0.0032553408,4,1.0,0.0004092661,0.0136986301,0.0030769231,0.0040625,0.0067885117,0.0102960103,0.0089686099,1.0,0.1344085867
1.3.1.1.8.3.4,58433,"(10LBB) Hot Reheat System 10LBB",7112,"CCGTD1_IPS",WBS,"58430",,,,100,Complete,11/03/2019,11/03/2019,30/10/2019,15/11/2019,,,,,188,225,222,261,44,52,51,60,,,"CCGT D1_Integrated Programme Schedule;M&E;Construction;M&E Construction;BOP;Steam Systems (LB)"
1.3.1.1.8.3.4-1,10LBB55,"Insulation of Pipework Prior to Neutral Float",7112,"CCGTD1_IPS",TT_Task,"58433",-,-,-,100,TK_Complete,20/06/2019,20/06/2019,03/07/2019,28/09/2019,"10LBB20 FS","10LBB20","10LBB60 FF","10LBB60",203,239,205,254,47,55,47,59,64,,"CCGT D1_Integrated Programme Schedule;M&E;Construction;M&E Construction;BOP;Steam Systems (LB);(10LBB) Hot Reheat System 10LBB",1,1,0.0000000621,0.003051882,0.0002034588,13,0.0,0.0000848786,0.0068493151,0.0030769231,0.00009375,0.0078328982,0.0006435006,0.0291479821,0.0,0.0014914188
1.3.1.1.8.3.4-2,10LBB20,"Install Large Bore Pipe/Valves/Supports",7112,"CCGTD1_IPS",TT_Task,"58433",-,-,-,100,TK_Complete,11/03/2019,11/03/2019,07/05/2019,07/09/2019,"","","10LBB55 FS,10LBB80 FS,10LBB50 FS,10LCA-02-20 SS,10LBB30 FS,10LBB40 FF","10LBB55,10LBB80,10LBB50,10LCA-02-20,10LBB30,10LBB40",188,225,196,251,44,52,45,58,48,,"CCGT D1_Integrated Programme Schedule;M&E;Construction;M&E Construction;BOP;Steam Systems (LB);(10LBB) Hot Reheat System 10LBB",0,6,0.0,0.0059003052,0.0,57,0.0,0.0000812387,0.0,0.0184615385,0.0,0.0151436031,0.0,0.1278026906,0.0,0.0
1.3.1.1.8.3.4-3,10LBB80,"Insulation of Neutral Float Weld",7112,"CCGTD1_IPS",TT_Task,"58433",-,-,-,100,TK_Complete,30/09/2019,04/10/2019,12/10/2019,02/11/2019,"10LBB20 FS","10LBB20","10LBB90 FS","10LBB90",217,255,219,259,50,59,51,60,77,,"CCGT D1_Integrated Programme Schedule;M&E;Construction;M&E Construction;BOP;Steam Systems (LB);(10LBB) Hot Reheat System 10LBB",1,1,0.0000002484,0.0024415056,0.0002034588,12,0.0,0.0000845986,0.0068493151,0.0030769231,0.000375,0.0062663185,0.0006435006,0.0269058296,0.0,0.0013766943
1.3.1.1.8.3.4-4,10LBB50,"EC+I",7112,"CCGTD1_IPS",TT_Task,"58433",-,-,-,100,TK_Complete,25/05/2019,25/05/2019,12/07/2019,28/09/2019,"10LBB20 FS","10LBB20","10LBB90 FS","10LBB90",199,236,206,254,46,55,48,59,59,,"CCGT D1_Integrated Programme Schedule;M&E;Construction;M&E Construction;BOP;Steam Systems (LB);(10LBB) Hot Reheat System 10LBB",1,1,0.0000002484,0.0024415056,0.0002034588,48,0.0,0.0000946781,0.0068493151,0.0030769231,0.000375,0.0062663185,0.0006435006,0.1076233184,0.0,0.0055067771
1.3.1.1.8.3.4-5,10LBB65,"Neutral Float of LBB and FInal Weld to Turbine Stop Valve",7112,"CCGTD1_IPS",TT_Task,"58433",-,-,-,100,TK_Complete,19/07/2019,18/07/2019,01/08/2019,05/10/2019,"10LBB60 FS","10LBB60","10LBB70 FS","10LBB70",207,243,209,255,48,56,48,59,66,,"CCGT D1_Integrated Programme Schedule;M&E;Construction;M&E Construction;BOP;Steam Systems (LB);(10LBB) Hot Reheat System 10LBB",1,1,0.0,0.0026449644,0.001017294,13,0.0,0.0001949723,0.0068493151,0.0030769231,0.0,0.0067885117,0.0032175032,0.0291479821,0.0,0.0466021016
1.3.1.1.8.3.4-6,10LBB30,"Install Small Bore Pipe/Valves/Supports",7112,"CCGTD1_IPS",TT_Task,"58433",-,-,-,100,TK_Complete,08/05/2019,08/05/2019,15/06/2019,07/09/2019,"10LBB20 FS","10LBB20","10LBB40 FF","10LBB40",197,233,202,251,45,54,47,58,57,,"CCGT D1_Integrated Programme Schedule;M&E;Construction;M&E Construction;BOP;Steam Systems (LB);(10LBB) Hot Reheat System 10LBB",1,1,0.0,0.0032553408,0.0002034588,38,0.0,0.0000918783,0.0068493151,0.0030769231,0.0,0.0083550914,0.0006435006,0.0852017937,0.0,0.0043595319
1.3.1.1.8.3.4-7,10LBB90,"Pre-Commissioning/Flushing/Cleaning",7112,"CCGTD1_IPS",TT_Task,"58433",-,-,-,100,TK_Complete,16/10/2019,26/10/2019,30/10/2019,15/11/2019,"10LBB80 FS,10LBB50 FS,10LBB70 FS","10LBB80,10LBB50,10LBB70","TOP2070 FS","TOP2070",220,258,222,261,51,60,51,60,79,,"CCGT D1_Integrated Programme Schedule;M&E;Construction;M&E Construction;BOP;Steam Systems (LB);(10LBB) Hot Reheat System 10LBB",3,1,0.000004099,0.0022380468,0.0018311292,14,0.2,0.0005636939,0.0205479452,0.0030769231,0.0061875,0.0057441253,0.0057915058,0.0313901345,0.2,0.197685091
1.3.1.1.8.3.4-8,10LBB40,"NDE",7112,"CCGTD1_IPS",TT_Task,"58433",-,-,-,100,TK_Complete,09/05/2019,09/05/2019,15/06/2019,26/09/2019,"10LBB30 FF,10LBB20 FF","10LBB30,10LBB20","10LBB60 FS","10LBB60",197,233,202,253,46,54,47,59,58,,"CCGT D1_Integrated Programme Schedule;M&E;Construction;M&E Construction;BOP;Steam Systems (LB);(10LBB) Hot Reheat System 10LBB",2,1,0.0000006832,0.003051882,0.0004069176,37,0.0,0.0001698089,0.0136986301,0.0030769231,0.00103125,0.0078328982,0.0012870013,0.0829596413,0.0,0.0362914542
1.3.1.1.8.3.4-9,10LBB60,"Line Inspection & Preparation for Neutral Float",7112,"CCGTD1_IPS",TT_Task,"58433",-,-,-,100,TK_Complete,03/08/2019,03/08/2019,15/08/2019,28/08/2019,"10LBB40 FS,10LBB55 FF","10LBB40,10LBB55","10LBB70 FS,10LBB65 FS","10LBB70,10LBB65",209,246,211,249,48,57,49,58,68,,"CCGT D1_Integrated Programme Schedule;M&E;Construction;M&E Construction;BOP;Steam Systems (LB);(10LBB) Hot Reheat System 10LBB",2,2,0.0000018218,0.0028484232,0.0008138352,12,0.0,0.0002980267,0.0136986301,0.0061538462,0.00275,0.007310705,0.0025740026,0.0269058296,0.0,0.0888284562
1.3.1.1.8.3.4-10,10LBB70,"Hydro Test",7112,"CCGTD1_IPS",TT_Task,"58433",-,-,-,100,TK_Complete,30/09/2019,24/09/2019,16/10/2019,25/10/2019,"10LBB65 FS,10LBB60 FS","10LBB65,10LBB60","10LBB90 FS","10LBB90",217,253,220,258,50,59,51,60,77,,"CCGT D1_Integrated Programme Schedule;M&E;Construction;M&E Construction;BOP;Steam Systems (LB);(10LBB) Hot Reheat System 10LBB",2,1,0.0000024842,0.0024415056,0.0012207528,16,0.0,0.0003872607,0.0136986301,0.0030769231,0.00375,0.0062663185,0.0038610039,0.0358744395,0.0,0.125391918
1.3.1.1.8.3.5,58432,"(10LBA10) HP Main Steam System",7112,"CCGTD1_IPS",WBS,"58430",,,,100,Complete,28/02/2019,11/03/2019,17/10/2019,05/11/2019,,,,,187,225,220,259,43,52,51,60,,,"CCGT D1_Integrated Programme Schedule;M&E;Construction;M&E Construction;BOP;Steam Systems (LB)"
1.3.1.1.8.3.5-1,10LBA10-20,"Install Large Bore Pipe/Valves/Supports",7112,"CCGTD1_IPS",TT_Task,"58432",-,-,-,100,TK_Complete,28/02/2019,11/03/2019,09/05/2019,05/09/2019,"SI---P4I40 FS,A2380 FS,SUB-BOP-160 FS,A1010 FS,KD_C17 FS,10MKB90 FS","SI---P4I40,A2380,SUB-BOP-160,A1010,KD_C17,10MKB90","10LBA10-55 FS,10LBA10-80 FS,10LBA10-50 FS,10LBA10-30 FS,10LBA10-40 SS,10LBA10-60 FS","10LBA10-55,10LBA10-80,10LBA10-50,10LBA10-30,10LBA10-40,10LBA10-60",187,225,197,250,43,52,46,58,48,,"CCGT D1_Integrated Programme Schedule;M&E;Construction;M&E Construction;BOP;Steam Systems (LB);(10LBA10) HP Main Steam System",6,6,0.0000252233,0.004069176,0.012207528,70,0.0,0.0002028851,0.0410958904,0.0184615385,0.038075,0.0104438642,0.0386100386,0.1569506726,0.0,0.0498443646
1.3.1.1.8.3.5-2,10LBA10-55,"Insulation of Pipework Prior to Neutral Float",7112,"CCGTD1_IPS",TT_Task,"58432",-,-,-,100,TK_Complete,17/06/2019,17/06/2019,11/07/2019,25/09/2019,"10LBA10-20 FS,10LBA10-30 FS","10LBA10-20,10LBA10-30","10LBA10-65 FS","10LBA10-65",202,239,206,253,47,55,48,59,63,,"CCGT D1_Integrated Programme Schedule;M&E;Construction;M&E Construction;BOP;Steam Systems (LB);(10LBA10) HP Main Steam System",2,1,0.0000018908,0.003051882,0.0126144456,24,0.0,0.0001271516,0.0136986301,0.0030769231,0.0028541667,0.0078328982,0.0398970399,0.0538116592,0.0,0.0188127286
1.3.1.1.8.3.5-3,10LBA10-60,"Line Inspection & Preparation for Neutral Float",7112,"CCGTD1_IPS",TT_Task,"58432",-,-,-,100,TK_Complete,01/08/2019,10/08/2019,13/08/2019,26/08/2019,"10LBA10-30 FS,10LBA10-20 FS","10LBA10-30,10LBA10-20","10LBA10-65 FS","10LBA10-65",209,247,210,249,48,57,49,58,67,,"CCGT D1_Integrated Programme Schedule;M&E;Construction;M&E Construction;BOP;Steam Systems (LB);(10LBA10) HP Main Steam System",2,1,0.0000018908,0.003051882,0.0126144456,12,0.8,0.0001041952,0.0136986301,0.0030769231,0.0028541667,0.0078328982,0.0398970399,0.0269058296,0.8,0.0094063643
1.3.1.1.8.3.5-4,10LBA10-65,"Neutral Float of LBA and FInal Weld to Turbine Stop Valve",7112,"CCGTD1_IPS",TT_Task,"58432",-,-,-,100,TK_Complete,26/07/2019,17/07/2019,07/08/2019,28/09/2019,"10MA-1440 FS,10LBA10-60 FS,10LBA10-40 FS,10LBA10-55 FS","10MA-1440,10LBA10-60,10LBA10-40,10LBA10-55","10LBA10-70 FS","10LBA10-70",208,243,210,254,48,56,49,59,66,,"CCGT D1_Integrated Programme Schedule;M&E;Construction;M&E Construction;BOP;Steam Systems (LB);(10LBA10) HP Main Steam System",4,1,0.0000154644,0.0028484232,0.0252288911,12,0.0,0.0004804682,0.0273972603,0.0030769231,0.02334375,0.007310705,0.0797940798,0.0269058296,0.0,0.1635835144
1.3.1.1.8.3.5-5,10LBA10-50,"EC+I",7112,"CCGTD1_IPS",TT_Task,"58432",-,-,-,100,TK_Complete,27/05/2019,14/05/2019,02/07/2019,24/09/2019,"10LBA10-20 FS","10LBA10-20","10LBA10-90 FS","10LBA10-90",199,234,204,253,46,54,47,59,60,,"CCGT D1_Integrated Programme Schedule;M&E;Construction;M&E Construction;BOP;Steam Systems (LB);(10LBA10) HP Main Steam System",1,1,0.0000029438,0.0024415056,0.0124109868,36,0.0,0.0001150362,0.0068493151,0.0030769231,0.00444375,0.0062663185,0.0392535393,0.0807174888,0.0,0.0138484744
1.3.1.1.8.3.5-6,10LBA10-80,"Insulation of Neutral Float Weld",7112,"CCGTD1_IPS",TT_Task,"58432",-,-,-,100,TK_Complete,05/10/2019,05/10/2019,11/10/2019,30/10/2019,"10LBA10-20 FS,10LBA10-70 FS,SI1UHW3B25 FS","10LBA10-20,10LBA10-70,SI1UHW3B25","10LBA10-90 FS","10LBA10-90",218,255,219,258,50,59,51,60,78,,"CCGT D1_Integrated Programme Schedule;M&E;Construction;M&E Construction;BOP;Steam Systems (LB);(10LBA10) HP Main Steam System",3,1,0.0000121562,0.0024415056,0.0258392675,6,0.0,0.0005729578,0.0205479452,0.0030769231,0.01835,0.0062663185,0.0817245817,0.0134529148,0.0,0.2014809634
1.3.1.1.8.3.5-7,10LBA10-30,"Install Small Bore Pipe/Valves/Supports",7112,"CCGTD1_IPS",TT_Task,"58432",-,-,-,100,TK_Complete,09/05/2019,09/05/2019,17/06/2019,03/09/2019,"10LBA10-20 FS","10LBA10-20","10LBA10-40 FF,10LBA10-55 FS,10LBA10-60 FS","10LBA10-40,10LBA10-55,10LBA10-60",197,233,202,250,46,54,47,58,58,,"CCGT D1_Integrated Programme Schedule;M&E;Construction;M&E Construction;BOP;Steam Systems (LB);(10LBA10) HP Main Steam System",1,3,0.0,0.0036622584,0.0124109868,39,0.0,0.0001178527,0.0068493151,0.0092307692,0.0,0.0093994778,0.0392535393,0.0874439462,0.0,0.015002514
1.3.1.1.8.3.5-8,10LBA10-90,"Pre-Commissioning/Flushing/Cleaning",7112,"CCGTD1_IPS",TT_Task,"58432",-,-,-,100,TK_Complete,12/10/2019,26/10/2019,17/10/2019,05/11/2019,"10LBA10-80 FS,10LBA10-50 FS","10LBA10-80,10LBA10-50","TOP2050 FS","TOP2050",219,258,220,259,51,60,51,60,79,,"CCGT D1_Integrated Programme Schedule;M&E;Construction;M&E Construction;BOP;Steam Systems (LB);(10LBA10) HP Main Steam System",2,1,0.0000107526,0.0022380468,0.0262461851,5,0.6,0.0006671249,0.0136986301,0.0030769231,0.01623125,0.0057441253,0.083011583,0.0112107623,0.6,0.2400657499
1.3.1.1.8.3.5-9,10LBA10-40,"NDE",7112,"CCGTD1_IPS",TT_Task,"58432",-,-,-,100,TK_Complete,04/04/2019,04/04/2019,10/06/2019,26/09/2019,"10LBA10-30 FF,10LBA10-20 SS","10LBA10-30,10LBA10-20","10LBA10-65 FS","10LBA10-65",192,228,201,253,44,53,47,59,52,,"CCGT D1_Integrated Programme Schedule;M&E;Construction;M&E Construction;BOP;Steam Systems (LB);(10LBA10) HP Main Steam System",2,1,0.0000018908,0.003051882,0.0126144456,67,0.0,0.0002094123,0.0136986301,0.0030769231,0.0028541667,0.0078328982,0.0398970399,0.1502242152,0.0,0.0525188672
1.3.1.1.8.3.5-10,10LBA10-70,"Hydro Test",7112,"CCGTD1_IPS",TT_Task,"58432",-,-,-,100,TK_Complete,30/09/2019,23/10/2019,04/10/2019,26/10/2019,"10LBA10-65 FS","10LBA10-65","10LBA10-80 FS","10LBA10-80",217,257,218,258,50,60,50,60,77,,"CCGT D1_Integrated Programme Schedule;M&E;Construction;M&E Construction;BOP;Steam Systems (LB);(10LBA10) HP Main Steam System",1,1,0.0000108685,0.0026449644,0.0254323499,4,1.0,0.0004896751,0.0068493151,0.0030769231,0.01640625,0.0067885117,0.0804375804,0.0089686099,1.0,0.167356034
1.3.1.1.8.3.6,58431,"(10LBA80) LP Main Steam System",7112,"CCGTD1_IPS",WBS,"58430",,,,100,Complete,11/03/2019,11/03/2019,26/10/2019,04/11/2019,,,,,188,225,221,259,44,52,51,60,,,"CCGT D1_Integrated Programme Schedule;M&E;Construction;M&E Construction;BOP;Steam Systems (LB)"
1.3.1.1.8.3.6-1,10LBA80-20,"Install Large Bore Pipe/Valves/Supports",7112,"CCGTD1_IPS",TT_Task,"58431",-,-,-,100,TK_Complete,11/03/2019,11/03/2019,30/04/2019,03/08/2019,"SI---P4I40 FS,A2380 FS,SI1--P4H40 FS,SI1--P4A40 FS,SUB-BOP-160 FS,KD_E03 FS,KD_E04 FS,KD_E05 FS,A1010 FS,KD_C17 FS","SI---P4I40,A2380,SI1--P4H40,SI1--P4A40,SUB-BOP-160,KD_E03,KD_E04,KD_E05,A1010,KD_C17","10LBA80-50 FS,10LBA80-40 SS,10LBA80-30 FS,10LBA80-80 FS","10LBA80-50,10LBA80-40,10LBA80-30,10LBA80-80",188,225,195,246,44,52,45,57,48,,"CCGT D1_Integrated Programme Schedule;M&E;Construction;M&E Construction;BOP;Steam Systems (LB);(10LBA80) LP Main Steam System",10,4,0.0000216432,0.0036622584,0.0130213632,50,0.0,0.000162933,0.0684931507,0.0123076923,0.0326708333,0.0093994778,0.0411840412,0.1121076233,0.0,0.0334740945
1.3.1.1.8.3.6-2,10LBA80-80,"Painting/Insulation of Pipework",7112,"CCGTD1_IPS",TT_Task,"58431",-,-,-,100,TK_Complete,20/05/2019,20/05/2019,25/06/2019,04/11/2019,"10LBA80-20 FS","10LBA80-20","10LBA80-90 FF","10LBA80-90",198,235,203,259,46,54,47,60,59,,"CCGT D1_Integrated Programme Schedule;M&E;Construction;M&E Construction;BOP;Steam Systems (LB);(10LBA80) LP Main Steam System",1,1,0.0000031205,0.0024415056,0.013224822,36,0.0,0.0001113235,0.0068493151,0.0030769231,0.0047104167,0.0062663185,0.0418275418,0.0807174888,0.0,0.0123271782
1.3.1.1.8.3.6-3,10LBA80-50,"EC+I",7112,"CCGTD1_IPS",TT_Task,"58431",-,-,-,100,TK_Complete,20/05/2019,20/05/2019,18/06/2019,26/09/2019,"10LBA80-20 FS","10LBA80-20","10LBA80-90 FF","10LBA80-90",198,235,202,253,46,54,47,59,59,,"CCGT D1_Integrated Programme Schedule;M&E;Construction;M&E Construction;BOP;Steam Systems (LB);(10LBA80) LP Main Steam System",1,1,0.0000031205,0.0024415056,0.013224822,29,0.0,0.0001054737,0.0068493151,0.0030769231,0.0047104167,0.0062663185,0.0418275418,0.0650224215,0.0,0.0099302269
1.3.1.1.8.3.6-4,10LBA80-90,"Pre-Commissioning/Flushing/Cleaning",7112,"CCGTD1_IPS",TT_Task,"58431",-,-,-,100,TK_Complete,17/10/2019,26/10/2019,22/10/2019,04/11/2019,"10LBA80-80 FF,10LBA80-50 FF,10LBA80-70 FS","10LBA80-80,10LBA80-50,10LBA80-70","TOP2060 FS","TOP2060",220,258,220,259,51,60,51,60,79,,"CCGT D1_Integrated Programme Schedule;M&E;Construction;M&E Construction;BOP;Steam Systems (LB);(10LBA80) LP Main Steam System",3,1,0.0000062824,0.0022380468,0.0144455748,5,0.6,0.0005386709,0.0205479452,0.0030769231,0.0094833333,0.0057441253,0.0456885457,0.0112107623,0.6,0.1874319519
1.3.1.1.8.3.6-5,10LBA80-40,"NDE",7112,"CCGTD1_IPS",TT_Task,"58431",-,-,-,100,TK_Complete,16/04/2019,16/04/2019,08/06/2019,27/09/2019,"10LBA80-20 SS,10LBA80-30 FF","10LBA80-20,10LBA80-30","10LBA80-60 FS","10LBA80-60",193,230,201,254,45,53,47,59,54,,"CCGT D1_Integrated Programme Schedule;M&E;Construction;M&E Construction;BOP;Steam Systems (LB);(10LBA80) LP Main Steam System",2,1,0.0000013456,0.0028484232,0.0134282808,53,0.0,0.0002037579,0.0136986301,0.0030769231,0.00203125,0.007310705,0.0424710425,0.1188340807,0.0,0.0502019913
1.3.1.1.8.3.6-6,10LBA80-30,"Install Small Bore Pipe/Valves/Supports",7112,"CCGTD1_IPS",TT_Task,"58431",-,-,-,100,TK_Complete,16/04/2019,16/04/2019,03/06/2019,03/08/2019,"10LBA80-20 FS","10LBA80-20","10LBA80-70 FS,10LBA80-60 FS,10LBA80-40 FF","10LBA80-70,10LBA80-60,10LBA80-40",193,230,200,246,45,53,46,57,54,,"CCGT D1_Integrated Programme Schedule;M&E;Construction;M&E Construction;BOP;Steam Systems (LB);(10LBA80) LP Main Steam System",1,3,0.0000040369,0.003051882,0.013224822,48,0.0,0.0001213517,0.0068493151,0.0092307692,0.00609375,0.0078328982,0.0418275418,0.1076233184,0.0,0.0164362376
1.3.1.1.8.3.6-7,10LBA80-60,"Line Inspection",7112,"CCGTD1_IPS",TT_Task,"58431",-,-,-,100,TK_Complete,04/09/2019,28/09/2019,17/09/2019,21/10/2019,"10LBA80-40 FS,10LBA80-30 FS","10LBA80-40,10LBA80-30","10LBA80-70 FS","10LBA80-70",214,254,215,257,49,59,50,60,75,,"CCGT D1_Integrated Programme Schedule;M&E;Construction;M&E Construction;BOP;Steam Systems (LB);(10LBA80) LP Main Steam System",2,1,0.0000005383,0.0026449644,0.0136317396,13,0.0,0.0002739113,0.0136986301,0.0030769231,0.0008125,0.0067885117,0.0431145431,0.0291479821,0.0,0.0789472288
1.3.1.1.8.3.6-8,10LBA80-70,"Hydro Test",7112,"CCGTD1_IPS",TT_Task,"58431",-,-,-,100,TK_Complete,22/10/2019,22/10/2019,26/10/2019,25/10/2019,"10LBA80-30 FS,10LBA80-60 FS","10LBA80-30,10LBA80-60","10LBA80-90 FS","10LBA80-90",220,257,221,258,51,60,51,60,80,,"CCGT D1_Integrated Programme Schedule;M&E;Construction;M&E Construction;BOP;Steam Systems (LB);(10LBA80) LP Main Steam System",2,1,0.0000014905,0.0024415056,0.0138351984,4,1.0,0.0003203882,0.0136986301,0.0030769231,0.00225,0.0062663185,0.0437580438,0.0089686099,1.0,0.0979910407
1.3.1.1.9,58422,"Sampling / Chemical Dosing System",7112,"CCGTD1_IPS",WBS,"58325",,,,100,Complete,13/02/2019,26/02/2019,07/11/2019,19/01/2020,,,,,185,223,223,270,43,52,52,63,,,"CCGT D1_Integrated Programme Schedule;M&E;Construction;M&E Construction"
1.3.1.1.9.1,58423,"Sampling / Chemical Dosing (Q)",7112,"CCGTD1_IPS",WBS,"58422",,,,100,Complete,13/02/2019,26/02/2019,07/11/2019,19/01/2020,,,,,185,223,223,270,43,52,52,63,,,"CCGT D1_Integrated Programme Schedule;M&E;Construction;M&E Construction;Sampling / Chemical Dosing System"
1.3.1.1.9.1.1,58428,"(00STG) Laboratory Container STG",7112,"CCGTD1_IPS",WBS,"58423",,,,100,Complete,11/03/2019,30/04/2019,22/10/2019,10/12/2019,,,,,188,232,220,264,44,54,51,61,,,"CCGT D1_Integrated Programme Schedule;M&E;Construction;M&E Construction;Sampling / Chemical Dosing System;Sampling / Chemical Dosing (Q)"
1.3.1.1.9.1.1-1,00STG20,"Install Containers",7112,"CCGTD1_IPS",TT_Task,"58428",-,-,-,100,TK_Complete,11/03/2019,30/04/2019,16/03/2019,24/05/2019,"SI1STG-4-44 FS,KD_D06 FS,SUB-BOP-160 FS,KD_E03 FS,A1010 FS,KD_H01 FS","SI1STG-4-44,KD_D06,SUB-BOP-160,KD_E03,A1010,KD_H01","00STG30 FS","00STG30",188,232,189,236,44,54,44,55,48,,"CCGT D1_Integrated Programme Schedule;M&E;Construction;M&E Construction;Sampling / Chemical Dosing System;Sampling / Chemical Dosing (Q);(00STG) Laboratory Container STG",6,1,0.0000118001,0.0026449644,0.0113936928,5,0.0,0.0001599535,0.0410958904,0.0030769231,0.0178125,0.0067885117,0.036036036,0.0112107623,0.0,0.0322532523
1.3.1.1.9.1.1-2,00STG30,"Install Interconnecting Lines To Process",7112,"CCGTD1_IPS",TT_Task,"58428",-,-,-,100,TK_Complete,31/05/2019,03/06/2019,06/07/2019,08/10/2019,"00STG20 FS","00STG20","00STG40 FS,00STG50 FS","00STG40,00STG50",200,237,205,255,46,55,47,59,60,,"CCGT D1_Integrated Programme Schedule;M&E;Construction;M&E Construction;Sampling / Chemical Dosing System;Sampling / Chemical Dosing (Q);(00STG) Laboratory Container STG",1,2,0.0000099783,0.0024415056,0.0115971516,36,0.0,0.0002173816,0.0068493151,0.0061538462,0.0150625,0.0062663185,0.0366795367,0.0807174888,0.0,0.0557842921
1.3.1.1.9.1.1-3,00STG40,"Hydro/Leak Test",7112,"CCGTD1_IPS",TT_Task,"58428",-,-,-,100,TK_Complete,10/09/2019,28/09/2019,16/09/2019,12/10/2019,"00STG30 FS","00STG30","00STG60 FS","00STG60",214,254,215,256,50,59,50,59,76,,"CCGT D1_Integrated Programme Schedule;M&E;Construction;M&E Construction;Sampling / Chemical Dosing System;Sampling / Chemical Dosing (Q);(00STG) Laboratory Container STG",1,1,0.0000028569,0.002034588,0.0118006104,6,0.2,0.000107678,0.0068493151,0.0030769231,0.0043125,0.0052219321,0.0373230373,0.0134529148,0.2,0.0108334596
1.3.1.1.9.1.1-4,00STG50,"EC+I",7112,"CCGTD1_IPS",TT_Task,"58428",-,-,-,100,TK_Complete,08/07/2019,04/06/2019,13/08/2019,10/10/2019,"SI-C-4C40 FS,SI-BZK4-58 FS,EDS.1090 FS,SI-CP-4-40 FS,CP-BZP7B15 FS,SI-C--4B40 FS,SI-BZK4-25 FS,00STG30 FS","SI-C-4C40,SI-BZK4-58,EDS.1090,SI-CP-4-40,CP-BZP7B15,SI-C--4B40,SI-BZK4-25,00STG30","00STG60 FS","00STG60",205,237,210,255,48,55,49,59,65,,"CCGT D1_Integrated Programme Schedule;M&E;Construction;M&E Construction;Sampling / Chemical Dosing System;Sampling / Chemical Dosing (Q);(00STG) Laboratory Container STG",8,1,0.0000055067,0.002034588,0.0181078332,36,0.0,0.0002761062,0.0547945205,0.0030769231,0.0083125,0.0052219321,0.0572715573,0.0807174888,0.0,0.0798465965
1.3.1.1.9.1.1-5,00STG60,"Precommissioning",7112,"CCGTD1_IPS",TT_Task,"58428",-,-,-,100,TK_Complete,03/10/2019,17/10/2019,22/10/2019,10/12/2019,"00STG40 FS,00STG50 FS","00STG40,00STG50","TOP2260 FS","TOP2260",218,256,220,264,50,59,51,61,78,,"CCGT D1_Integrated Programme Schedule;M&E;Construction;M&E Construction;Sampling / Chemical Dosing System;Sampling / Chemical Dosing (Q);(00STG) Laboratory Container STG",2,1,0.0000054239,0.0018311292,0.0185147508,19,0.0,0.0004080305,0.0136986301,0.0030769231,0.0081875,0.0046997389,0.0585585586,0.0426008969,0.0,0.1339022979
1.3.1.1.9.1.2,58427,"10QCB) Hydrazine Dosing QC",7112,"CCGTD1_IPS",WBS,"58423",,,,100,Complete,01/04/2019,26/03/2019,21/10/2019,26/11/2019,,,,,191,227,220,262,44,53,51,61,,,"CCGT D1_Integrated Programme Schedule;M&E;Construction;M&E Construction;Sampling / Chemical Dosing System;Sampling / Chemical Dosing (Q)"
1.3.1.1.9.1.2-1,10QCB20,"Install Containers",7112,"CCGTD1_IPS",TT_Task,"58427",-,-,-,100,TK_Complete,01/04/2019,26/03/2019,18/04/2019,07/10/2019,"KD_D06 FS,KD_E03 FS,KD_E05 FS","KD_D06,KD_E03,KD_E05","10QCB30 SS,10QCB50 SS","10QCB30,10QCB50",191,227,194,255,44,53,45,59,50,,"CCGT D1_Integrated Programme Schedule;M&E;Construction;M&E Construction;Sampling / Chemical Dosing System;Sampling / Chemical Dosing (Q);10QCB) Hydrazine Dosing QC",3,2,0.0000008281,0.0026449644,0.0008138352,17,0.0,0.00008509,0.0205479452,0.0061538462,0.00125,0.0067885117,0.0025740026,0.0381165919,0.0,0.0015780514
1.3.1.1.9.1.2-2,10QCB30,"Install Interconnecting Lines To Process",7112,"CCGTD1_IPS",TT_Task,"58427",-,-,-,100,TK_Complete,31/05/2019,01/06/2019,23/07/2019,10/10/2019,"10QCB20 SS","10QCB20","10QCB40 FS","10QCB40",200,237,207,255,46,55,48,59,60,,"CCGT D1_Integrated Programme Schedule;M&E;Construction;M&E Construction;Sampling / Chemical Dosing System;Sampling / Chemical Dosing (Q);10QCB) Hydrazine Dosing QC",1,1,0.000000207,0.0022380468,0.001017294,53,0.0,0.0001229671,0.0068493151,0.0030769231,0.0003125,0.0057441253,0.0032175032,0.1188340807,0.0,0.0170981344
1.3.1.1.9.1.2-3,10QCB40,"Hydro/Leak Test",7112,"CCGTD1_IPS",TT_Task,"58427",-,-,-,100,TK_Complete,11/09/2019,28/09/2019,24/09/2019,12/10/2019,"10QCB30 FS","10QCB30","10QCB60 FS","10QCB60",215,254,216,256,50,59,50,59,76,,"CCGT D1_Integrated Programme Schedule;M&E;Construction;M&E Construction;Sampling / Chemical Dosing System;Sampling / Chemical Dosing (Q);10QCB) Hydrazine Dosing QC",1,1,0.000000414,0.002034588,0.0012207528,13,1.0,0.0001859059,0.0068493151,0.0030769231,0.000625,0.0052219321,0.0038610039,0.0291479821,1.0,0.042887169
1.3.1.1.9.1.2-4,10QCB50,"EC+I",7112,"CCGTD1_IPS",TT_Task,"58427",-,-,-,100,TK_Complete,30/04/2019,09/05/2019,08/06/2019,11/10/2019,"10QCB20 SS","10QCB20","10QCB60 FS","10QCB60",195,233,201,256,45,54,47,59,56,,"CCGT D1_Integrated Programme Schedule;M&E;Construction;M&E Construction;Sampling / Chemical Dosing System;Sampling / Chemical Dosing (Q);10QCB) Hydrazine Dosing QC",1,1,0.0000007453,0.002034588,0.001017294,39,0.0,0.0001119445,0.0068493151,0.0030769231,0.001125,0.0052219321,0.0032175032,0.0874439462,0.0,0.0125816461
1.3.1.1.9.1.2-5,10QCB60,"Precommissioning",7112,"CCGTD1_IPS",TT_Task,"58427",-,-,-,100,TK_Complete,04/10/2019,19/10/2019,21/10/2019,26/11/2019,"10QCB40 FS,10QCB50 FS","10QCB40,10QCB50","TOP1950 FS","TOP1950",218,257,220,262,50,60,51,61,78,,"CCGT D1_Integrated Programme Schedule;M&E;Construction;M&E Construction;Sampling / Chemical Dosing System;Sampling / Chemical Dosing (Q);10QCB) Hydrazine Dosing QC",2,1,0.0000016562,0.0018311292,0.0016276704,17,0.0,0.0003347844,0.0136986301,0.0030769231,0.0025,0.0046997389,0.0051480051,0.0381165919,0.0,0.1038898604
1.3.1.1.9.1.3,58426,"(10QCC) Trisodium Phosphate Dosing QC",7112,"CCGTD1_IPS",WBS,"58423",,,,100,Complete,11/03/2019,26/03/2019,04/11/2019,02/12/2019,,,,,188,227,222,263,44,53,51,61,,,"CCGT D1_Integrated Programme Schedule;M&E;Construction;M&E Construction;Sampling / Chemical Dosing System;Sampling / Chemical Dosing (Q)"
1.3.1.1.9.1.3-1,10QCC30,"Install Interconnecting Lines To Process",7112,"CCGTD1_IPS",TT_Task,"58426",-,-,-,100,TK_Complete,20/06/2019,10/05/2019,20/07/2019,11/10/2019,"10QCC20 FS","10QCC20","10QCC50 FS,10QCC40 FS","10QCC50,10QCC40",203,234,207,256,47,54,48,59,64,,"CCGT D1_Integrated Programme Schedule;M&E;Construction;M&E Construction;Sampling / Chemical Dosing System;Sampling / Chemical Dosing (Q);(10QCC) Trisodium Phosphate Dosing QC",1,2,0.000010144,0.0024415056,0.0118006104,30,0.0,0.0002075736,0.0068493151,0.0061538462,0.0153125,0.0062663185,0.0373230373,0.067264574,0.0,0.0517654616
1.3.1.1.9.1.3-2,10QCC40,"Hydro/Leak Test",7112,"CCGTD1_IPS",TT_Task,"58426",-,-,-,100,TK_Complete,05/09/2019,28/09/2019,30/09/2019,10/10/2019,"10QCC30 FS","10QCC30","10QCC60 FS","10QCC60",214,254,217,255,49,59,50,59,75,,"CCGT D1_Integrated Programme Schedule;M&E;Construction;M&E Construction;Sampling / Chemical Dosing System;Sampling / Chemical Dosing (Q);(10QCC) Trisodium Phosphate Dosing QC",1,1,0.0000028983,0.002034588,0.0120040692,25,1.0,0.0001630533,0.0068493151,0.0030769231,0.004375,0.0052219321,0.037966538,0.0560538117,1.0,0.0335233624
1.3.1.1.9.1.3-3,10QCC50,"EC+I",7112,"CCGTD1_IPS",TT_Task,"58426",-,-,-,100,TK_Complete,27/06/2019,22/06/2019,26/07/2019,11/10/2019,"SI-CP-4-40 FS,EDS.1090 FS,SI-C--4B40 FS,10QCC30 FS,SI-BZK4-25 FS,CP-BZP7B15 FS,SI-BZK4-58 FS,SI-C-4C40 FS","SI-CP-4-40,EDS.1090,SI-C--4B40,10QCC30,SI-BZK4-25,CP-BZP7B15,SI-BZK4-58,SI-C-4C40","10QCC60 FS","10QCC60",204,240,208,256,47,56,48,59,64,,"CCGT D1_Integrated Programme Schedule;M&E;Construction;M&E Construction;Sampling / Chemical Dosing System;Sampling / Chemical Dosing (Q);(10QCC) Trisodium Phosphate Dosing QC",8,1,0.0000055481,0.002034588,0.018311292,29,0.0,0.0002053302,0.0547945205,0.0030769231,0.008375,0.0052219321,0.0579150579,0.0650224215,0.0,0.0508462485
1.3.1.1.9.1.3-4,10QCC60,"Precommissioning",7112,"CCGTD1_IPS",TT_Task,"58426",-,-,-,100,TK_Complete,11/10/2019,18/10/2019,04/11/2019,02/12/2019,"10QCC40 FS,10QCC50 FS","10QCC40,10QCC50","TOP1960 FS","TOP1960",219,257,222,263,51,59,51,61,79,,"CCGT D1_Integrated Programme Schedule;M&E;Construction;M&E Construction;Sampling / Chemical Dosing System;Sampling / Chemical Dosing (Q);(10QCC) Trisodium Phosphate Dosing QC",2,1,0.0000054653,0.0018311292,0.0187182096,24,0.0,0.0003949107,0.0136986301,0.0030769231,0.00825,0.0046997389,0.0592020592,0.0538116592,0.0,0.128526513
1.3.1.1.9.1.3-5,10QCC20,"Install Containers",7112,"CCGTD1_IPS",TT_Task,"58426",-,-,-,100,TK_Complete,11/03/2019,26/03/2019,16/03/2019,03/05/2019,"SI1QC-4-40 FS,KD_D06 FS,SI1QU-4-40 FS,SUB-BOP-160 FS,KD_E03 FS,A1010 FS,KD_H01 FS","SI1QC-4-40,KD_D06,SI1QU-4-40,SUB-BOP-160,KD_E03,A1010,KD_H01","10QCC30 FS","10QCC30",188,227,189,233,44,53,44,54,48,,"CCGT D1_Integrated Programme Schedule;M&E;Construction;M&E Construction;Sampling / Chemical Dosing System;Sampling / Chemical Dosing (Q);(10QCC) Trisodium Phosphate Dosing QC",7,1,0.0000120071,0.0026449644,0.0115971516,5,0.0,0.0001484274,0.0479452055,0.0030769231,0.018125,0.0067885117,0.0366795367,0.0112107623,0.0,0.0275304261
1.3.1.1.9.1.4,58425,"(10QCD) Ammonia Dosing QC",7112,"CCGTD1_IPS",WBS,"58423",,,,100,Complete,13/02/2019,26/02/2019,26/10/2019,02/12/2019,,,,,185,223,221,263,43,52,51,61,,,"CCGT D1_Integrated Programme Schedule;M&E;Construction;M&E Construction;Sampling / Chemical Dosing System;Sampling / Chemical Dosing (Q)"
1.3.1.1.9.1.4-1,10QCD20,"Install Containers",7112,"CCGTD1_IPS",TT_Task,"58425",-,-,-,100,TK_Complete,13/02/2019,26/02/2019,20/02/2019,03/05/2019,"SI1QC-4-40 FS,SI1QU-4-40 FS,KD_D06 FS,SUB-BOP-160 FS,KD_E03 FS,A1010 FS,KD_H01 FS","SI1QC-4-40,SI1QU-4-40,KD_D06,SUB-BOP-160,KD_E03,A1010,KD_H01","10QCD30 FS","10QCD30",185,223,186,233,43,52,43,54,47,,"CCGT D1_Integrated Programme Schedule;M&E;Construction;M&E Construction;Sampling / Chemical Dosing System;Sampling / Chemical Dosing (Q);(10QCD) Ammonia Dosing QC",7,1,0.0000120071,0.0026449644,0.0115971516,7,0.0,0.0001753028,0.0479452055,0.0030769231,0.018125,0.0067885117,0.0366795367,0.0156950673,0.0,0.0385425966
1.3.1.1.9.1.4-2,10QCD30,"Install Interconnecting Lines To Process",7112,"CCGTD1_IPS",TT_Task,"58425",-,-,-,100,TK_Complete,07/06/2019,01/06/2019,09/07/2019,09/10/2019,"10QCD20 FS","10QCD20","10QCD40 FS,10QCD50 FS","10QCD40,10QCD50",201,237,205,255,46,55,48,59,62,,"CCGT D1_Integrated Programme Schedule;M&E;Construction;M&E Construction;Sampling / Chemical Dosing System;Sampling / Chemical Dosing (Q);(10QCD) Ammonia Dosing QC",1,2,0.000010144,0.0024415056,0.0118006104,32,0.0,0.0002304447,0.0068493151,0.0061538462,0.0153125,0.0062663185,0.0373230373,0.0717488789,0.0,0.0611368634
1.3.1.1.9.1.4-3,10QCD40,"Hydro/Leak Test",7112,"CCGTD1_IPS",TT_Task,"58425",-,-,-,100,TK_Complete,05/09/2019,28/09/2019,30/09/2019,10/10/2019,"10QCD30 FS","10QCD30","10QCD60 FS","10QCD60",214,254,217,255,49,59,50,59,75,,"CCGT D1_Integrated Programme Schedule;M&E;Construction;M&E Construction;Sampling / Chemical Dosing System;Sampling / Chemical Dosing (Q);(10QCD) Ammonia Dosing QC",1,1,0.0000028983,0.002034588,0.0120040692,25,1.0,0.0001834289,0.0068493151,0.0030769231,0.004375,0.0052219321,0.037966538,0.0560538117,1.0,0.041872225
1.3.1.1.9.1.4-4,10QCD50,"EC+I",7112,"CCGTD1_IPS",TT_Task,"58425",-,-,-,100,TK_Complete,09/07/2019,08/06/2019,01/08/2019,08/10/2019,"SI-C--4B40 FS,EDS.1090 FS,SI-CP-4-40 FS,SI-BZK4-58 FS,SI-BZK4-25 FS,SI-C-4C40 FS,10QCD30 FS,CP-BZP7B15 FS","SI-C--4B40,EDS.1090,SI-CP-4-40,SI-BZK4-58,SI-BZK4-25,SI-C-4C40,10QCD30,CP-BZP7B15","10QCD60 FS","10QCD60",205,238,209,255,48,55,48,59,65,,"CCGT D1_Integrated Programme Schedule;M&E;Construction;M&E Construction;Sampling / Chemical Dosing System;Sampling / Chemical Dosing (Q);(10QCD) Ammonia Dosing QC",8,1,0.0000055481,0.002034588,0.018311292,23,0.0,0.0001984016,0.0547945205,0.0030769231,0.008375,0.0052219321,0.0579150579,0.0515695067,0.0,0.0480072886
1.3.1.1.9.1.4-5,10QCD60,"Precommissioning",7112,"CCGTD1_IPS",TT_Task,"58425",-,-,-,100,TK_Complete,05/10/2019,19/10/2019,26/10/2019,02/12/2019,"10QCD50 FS,10QCD40 FS","10QCD50,10QCD40","TOP1970 FS","TOP1970",218,257,221,263,50,60,51,61,79,,"CCGT D1_Integrated Programme Schedule;M&E;Construction;M&E Construction;Sampling / Chemical Dosing System;Sampling / Chemical Dosing (Q);(10QCD) Ammonia Dosing QC",2,1,0.0000054653,0.0018311292,0.0187182096,21,0.0,0.000406387,0.0136986301,0.0030769231,0.00825,0.0046997389,0.0592020592,0.0470852018,0.0,0.133228886
1.3.1.1.9.1.5,58424,"(10QU) Sampling Container QC",7112,"CCGTD1_IPS",WBS,"58423",,,,100,Complete,01/04/2019,01/04/2019,07/11/2019,19/01/2020,,,,,191,228,223,270,44,53,52,63,,,"CCGT D1_Integrated Programme Schedule;M&E;Construction;M&E Construction;Sampling / Chemical Dosing System;Sampling / Chemical Dosing (Q)"
1.3.1.1.9.1.5-1,10QU20,"Install Containers",7112,"CCGTD1_IPS",TT_Task,"58424",-,-,-,100,TK_Complete,01/04/2019,01/04/2019,08/04/2019,12/09/2019,"KD_D06 FS,SUB-BOP-160 FS,KD_E03 FS,A1010 FS,KD_H01 FS","KD_D06,SUB-BOP-160,KD_E03,A1010,KD_H01","10QU30 FS,10QU50 FS","10QU30,10QU50",191,228,192,251,44,53,44,58,50,,"CCGT D1_Integrated Programme Schedule;M&E;Construction;M&E Construction;Sampling / Chemical Dosing System;Sampling / Chemical Dosing (Q);(10QU) Sampling Container QC",5,2,0.0000114866,0.0026449644,0.011190234,7,0.0,0.0000946197,0.0342465753,0.0061538462,0.0173392857,0.0067885117,0.0353925354,0.0156950673,0.0,0.0054828132
1.3.1.1.9.1.5-2,10QU30,"Install Interconnecting Lines To Process",7112,"CCGTD1_IPS",TT_Task,"58424",-,-,-,100,TK_Complete,09/04/2019,09/04/2019,27/06/2019,11/10/2019,"10HAD10-30 FF,10QU20 FS","10HAD10-30,10QU20","10QU40 FS","10QU40",192,229,204,256,45,53,47,59,53,,"CCGT D1_Integrated Programme Schedule;M&E;Construction;M&E Construction;Sampling / Chemical Dosing System;Sampling / Chemical Dosing (Q);(10QU) Sampling Container QC",2,1,0.000008612,0.0022380468,0.0211597152,79,0.0,0.0002294002,0.0136986301,0.0030769231,0.013,0.0057441253,0.0669240669,0.1771300448,0.0,0.0607088975
1.3.1.1.9.1.5-3,10QU40,"Hydro/Leak Test",7112,"CCGTD1_IPS",TT_Task,"58424",-,-,-,100,TK_Complete,13/09/2019,28/09/2019,10/10/2019,08/10/2019,"10QU30 FS","10QU30","10QU60 FS","10QU60",215,254,219,255,50,59,51,59,76,,"CCGT D1_Integrated Programme Schedule;M&E;Construction;M&E Construction;Sampling / Chemical Dosing System;Sampling / Chemical Dosing (Q);(10QU) Sampling Container QC",1,1,0.00000472,0.002034588,0.021363174,27,1.0,0.000276538,0.0068493151,0.0030769231,0.007125,0.0052219321,0.0675675676,0.0605381166,1.0,0.0800235257
1.3.1.1.9.1.5-4,10QU50,"EC+I",7112,"CCGTD1_IPS",TT_Task,"58424",-,-,-,100,TK_Complete,08/07/2019,04/06/2019,07/08/2019,10/10/2019,"SI-CP-4-40 FS,SI-C-4C40 FS,SI-BZK4-25 FS,SI-C--4B40 FS,EDS.1090 FS,SI-BZK4-58 FS,10QU20 FS,CP-BZP7B15 FS","SI-CP-4-40,SI-C-4C40,SI-BZK4-25,SI-C--4B40,EDS.1090,SI-BZK4-58,10QU20,CP-BZP7B15","10QU60 FS","10QU60",205,237,210,255,48,55,49,59,65,,"CCGT D1_Integrated Programme Schedule;M&E;Construction;M&E Construction;Sampling / Chemical Dosing System;Sampling / Chemical Dosing (Q);(10QU) Sampling Container QC",8,1,0.0000077425,0.002034588,0.0177009156,30,0.0,0.0001336014,0.0547945205,0.0030769231,0.0116875,0.0052219321,0.055984556,0.067264574,0.0,0.0214554913
1.3.1.1.9.1.5-5,10QU60,"Precommissioning",7112,"CCGTD1_IPS",TT_Task,"58424",-,-,-,100,TK_Complete,21/10/2019,18/10/2019,07/11/2019,19/01/2020,"10QU50 FS,10QU40 FS","10QU50,10QU40","TOP1980 FS","TOP1980",220,257,223,270,51,59,52,63,80,,"CCGT D1_Integrated Programme Schedule;M&E;Construction;M&E Construction;Sampling / Chemical Dosing System;Sampling / Chemical Dosing (Q);(10QU) Sampling Container QC",2,1,0.0000075769,0.0018311292,0.0280773143,17,0.0,0.0004304551,0.0136986301,0.0030769231,0.0114375,0.0046997389,0.0888030888,0.0381165919,0.0,0.1430907463
1.3.1.1.10,58418,"Demin System",7112,"CCGTD1_IPS",WBS,"58325",,,,100,Complete,21/02/2019,31/10/2018,06/09/2019,12/10/2019,,,,,186,206,214,256,43,48,50,59,,,"CCGT D1_Integrated Programme Schedule;M&E;Construction;M&E Construction"
1.3.1.1.10.1,58421,"(10GHC) Demineralised Water Distribution System inside 10 UMC",7112,"CCGTD1_IPS",WBS,"58418",,,,100,Complete,22/02/2019,31/10/2018,21/08/2019,28/09/2019,,,,,186,206,212,254,43,48,49,59,,,"CCGT D1_Integrated Programme Schedule;M&E;Construction;M&E Construction;Demin System"
1.3.1.1.10.1-1,10GHC70,"Painting/Insulation",7112,"CCGTD1_IPS",TT_Task,"58421",-,-,-,100,TK_Complete,13/06/2019,13/06/2019,02/07/2019,24/08/2019,"10GHC30 FS","10GHC30","10GHC80 FF","10GHC80",202,238,204,249,47,55,47,58,63,,"CCGT D1_Integrated Programme Schedule;M&E;Construction;M&E Construction;Demin System;(10GHC) Demineralised Water Distribution System inside 10 UMC",1,1,0.0000014077,0.0038657172,0.0130213632,19,0.0,0.0001493483,0.0068493151,0.0030769231,0.002125,0.009921671,0.0411840412,0.0426008969,0.0,0.0279077914
1.3.1.1.10.1-2,10GHC30,"Install Small Bore Pipe/Valves/Supports",7112,"CCGTD1_IPS",TT_Task,"58421",-,-,-,100,TK_Complete,27/04/2019,27/04/2019,07/06/2019,15/06/2019,"10GHC20 FS","10GHC20","10GHC40 FF,10GHC50 FS,10GHC70 FS","10GHC40,10GHC50,10GHC70",195,232,201,239,45,54,46,55,55,,"CCGT D1_Integrated Programme Schedule;M&E;Construction;M&E Construction;Demin System;(10GHC) Demineralised Water Distribution System inside 10 UMC",1,3,0.0000100197,0.0046795524,0.0128179044,41,0.6,0.000202104,0.0068493151,0.0092307692,0.015125,0.0120104439,0.0405405405,0.0919282511,0.6,0.0495243139
1.3.1.1.10.1-3,10GHC50,"Line Inspection",7112,"CCGTD1_IPS",TT_Task,"58421",-,-,-,100,TK_Complete,13/06/2019,22/06/2019,25/06/2019,10/07/2019,"10GHC30 FS","10GHC30","10GHC60 FS","10GHC60",202,240,203,242,47,56,47,56,63,,"CCGT D1_Integrated Programme Schedule;M&E;Construction;M&E Construction;Demin System;(10GHC) Demineralised Water Distribution System inside 10 UMC",1,1,0.0000026499,0.004069176,0.0130213632,12,0.2,0.0001242553,0.0068493151,0.0030769231,0.004,0.0104438642,0.0411840412,0.0269058296,0.2,0.0176259735
1.3.1.1.10.1-4,10GHC10,"Install Equipment/Skids/Pumps",7112,"CCGTD1_IPS",TT_Task,"58421",-,-,-,100,TK_Complete,01/04/2019,01/04/2019,12/04/2019,10/06/2019,"SI-GHD4-62 FS,SUB-BOP-160 FS,KD_D06 FS,KD_E03 FS,KD_E04 FS,KD_E05 FS,A1010 FS,KD_C17 FS","SI-GHD4-62,SUB-BOP-160,KD_D06,KD_E03,KD_E04,KD_E05,A1010,KD_C17","10GHC20 SS,10GHC40 FS","10GHC20,10GHC40",191,228,193,238,44,53,45,55,50,,"CCGT D1_Integrated Programme Schedule;M&E;Construction;M&E Construction;Demin System;(10GHC) Demineralised Water Distribution System inside 10 UMC",8,2,0.0000379186,0.00508647,0.0118006104,11,0.0,0.0001000917,0.0547945205,0.0061538462,0.0572388393,0.0130548303,0.0373230373,0.0246636771,0.0,0.0077249572
1.3.1.1.10.1-5,10GHC40,"EC+I",7112,"CCGTD1_IPS",TT_Task,"58421",-,-,-,100,TK_Complete,05/06/2019,07/06/2019,22/06/2019,20/09/2019,"SI-CP-4-40 FS,10GHC10 FS,EDS.1090 FS,SI-BZK4-25 FS,SI-C-4C40 FS,CP-BZP7A15 FS,SI-C--4B40 FS,10GHC30 FF,SI-BZK4-58 FS","SI-CP-4-40,10GHC10,EDS.1090,SI-BZK4-25,SI-C-4C40,CP-BZP7A15,SI-C--4B40,10GHC30,SI-BZK4-58","10GHC80 FS","10GHC80",201,238,203,253,46,55,47,59,61,,"CCGT D1_Integrated Programme Schedule;M&E;Construction;M&E Construction;Demin System;(10GHC) Demineralised Water Distribution System inside 10 UMC",9,1,0.0000395821,0.0038657172,0.0195320448,17,0.0,0.0001944173,0.0616438356,0.0030769231,0.05975,0.009921671,0.0617760618,0.0381165919,0.0,0.0463747155
1.3.1.1.10.1-6,10GHC20,"Install Large Bore Pipe/Valves/Supports",7112,"CCGTD1_IPS",TT_Task,"58421",-,-,-,100,TK_Complete,22/02/2019,31/10/2018,29/03/2019,30/04/2019,"10GHC10 SS,SI---P4I40 FS,SI1--P4A40 FS,SI1--P4H40 FS","10GHC10,SI---P4I40,SI1--P4A40,SI1--P4H40","10GHC30 FS","10GHC30",186,206,191,232,43,48,44,54,47,,"CCGT D1_Integrated Programme Schedule;M&E;Construction;M&E Construction;Demin System;(10GHC) Demineralised Water Distribution System inside 10 UMC",4,1,0.0000116345,0.0048830112,0.0126144456,35,0.0,0.0001419876,0.0273972603,0.0030769231,0.0175625,0.0125326371,0.0398970399,0.0784753363,0.0,0.0248917286
1.3.1.1.10.1-7,10GHC80,"Pre-Commissioning/Flushing/Cleaning",7112,"CCGTD1_IPS",TT_Task,"58421",-,-,-,100,TK_Complete,12/08/2019,17/08/2019,21/08/2019,28/09/2019,"10GHC70 FF,10GHC60 FS,10GHC40 FS","10GHC70,10GHC60,10GHC40","TOP2020 FS,TOP2860 FS,TOP2870 FS,TOP2880 FS","TOP2020,TOP2860,TOP2870,TOP2880",210,248,212,254,49,57,49,59,69,,"CCGT D1_Integrated Programme Schedule;M&E;Construction;M&E Construction;Demin System;(10GHC) Demineralised Water Distribution System inside 10 UMC",3,4,0.0000399962,0.0036622584,0.02034588,9,0.0,0.0005331559,0.0205479452,0.0123076923,0.060375,0.0093994778,0.0643500644,0.0201793722,0.0,0.1851722158
1.3.1.1.10.1-8,10GHC60,"Hydro Test",7112,"CCGTD1_IPS",TT_Task,"58421",-,-,-,100,TK_Complete,11/07/2019,24/07/2019,22/07/2019,10/08/2019,"10GHC50 FS","10GHC50","10GHC80 FS","10GHC80",206,244,207,247,48,57,48,57,66,,"CCGT D1_Integrated Programme Schedule;M&E;Construction;M&E Construction;Demin System;(10GHC) Demineralised Water Distribution System inside 10 UMC",1,1,0.0000007867,0.0038657172,0.013224822,11,0.4,0.0001870318,0.0068493151,0.0030769231,0.0011875,0.009921671,0.0418275418,0.0246636771,0.4,0.0433484963
1.3.1.1.10.2,58420,"(00GHC-01) Demineralised Water Storage System",7112,"CCGTD1_IPS",WBS,"58418",,,,100,Complete,01/04/2019,16/02/2019,04/09/2019,12/10/2019,,,,,191,222,214,256,44,51,49,59,,,"CCGT D1_Integrated Programme Schedule;M&E;Construction;M&E Construction;Demin System"
1.3.1.1.10.2-1,00GHC-01-10,"Install Equipment/Skids/Pumps",7112,"CCGTD1_IPS",TT_Task,"58420",-,-,-,100,TK_Complete,01/04/2019,17/02/2019,10/05/2019,28/02/2019,"KD_E02 FS","KD_E02","00GHC-01-20 FS,00GHC-01-40 FS","00GHC-01-20,00GHC-01-40",191,222,197,223,44,51,46,52,50,,"CCGT D1_Integrated Programme Schedule;M&E;Construction;M&E Construction;Demin System;(00GHC-01) Demineralised Water Storage System",1,2,0.0000001863,0.0038657172,0.0004069176,39,1.0,0.0000923839,0.0068493151,0.0061538462,0.00028125,0.009921671,0.0012870013,0.0874439462,1.0,0.0045666997
1.3.1.1.10.2-2,00GHC-01-40,"EC+I",7112,"CCGTD1_IPS",TT_Task,"58420",-,-,-,100,TK_Complete,15/05/2019,15/05/2019,08/06/2019,19/09/2019,"00GHC-01-10 FS,00GHC-01-20 FS","00GHC-01-10,00GHC-01-20","00GHC-01-80 FF","00GHC-01-80",198,234,201,252,46,54,47,59,58,,"CCGT D1_Integrated Programme Schedule;M&E;Construction;M&E Construction;Demin System;(00GHC-01) Demineralised Water Storage System",2,1,0.0000010351,0.0024415056,0.0008138352,24,0.0,0.0001626567,0.0136986301,0.0030769231,0.0015625,0.0062663185,0.0025740026,0.0538116592,0.0,0.0333608691
1.3.1.1.10.2-3,00GHC-01-20,"Install Large Bore Pipe/Valves/Supports",7112,"CCGTD1_IPS",TT_Task,"58420",-,-,-,100,TK_Complete,01/04/2019,16/02/2019,10/05/2019,15/05/2019,"00GHC-01-10 FS,KD_E02 FS","00GHC-01-10,KD_E02","00GHC-01-30 FS,00GHC-01-40 FS,00GHC-01-70 FS","00GHC-01-30,00GHC-01-40,00GHC-01-70",191,222,197,234,44,51,46,54,50,,"CCGT D1_Integrated Programme Schedule;M&E;Construction;M&E Construction;Demin System;(00GHC-01) Demineralised Water Storage System",2,3,0.0000009316,0.0036622584,0.0006103764,39,0.0,0.0001410663,0.0136986301,0.0092307692,0.00140625,0.0093994778,0.0019305019,0.0874439462,0.0,0.0245142301
1.3.1.1.10.2-4,00GHC-01-80,"Pre-Commissioning/Flushing/Cleaning",7112,"CCGTD1_IPS",TT_Task,"58420",-,-,-,100,TK_Complete,31/08/2019,07/09/2019,04/09/2019,12/10/2019,"00GHC-01-60 FF,00GHC-01-40 FF,00GHC-01-70 FS","00GHC-01-60,00GHC-01-40,00GHC-01-70","SC1230 FS,SC1240 FS,SC1170 FS,SC1340 FS","SC1230,SC1240,SC1170,SC1340",213,251,214,256,49,58,49,59,70,,"CCGT D1_Integrated Programme Schedule;M&E;Construction;M&E Construction;Demin System;(00GHC-01) Demineralised Water Storage System",3,4,0.0000037264,0.0022380468,0.002034588,4,0.0,0.0005181723,0.0205479452,0.0123076923,0.005625,0.0057441253,0.0064350064,0.0089686099,0.0,0.1790327089
1.3.1.1.10.2-5,00GHC-01-60,"Hydro Test",7112,"CCGTD1_IPS",TT_Task,"58420",-,-,-,100,TK_Complete,13/05/2019,13/05/2019,17/05/2019,23/05/2019,"00GHC-01-50 FS","00GHC-01-50","00GHC-01-80 FF,S1070 SS","00GHC-01-80,S1070",197,234,198,235,46,54,46,55,58,,"CCGT D1_Integrated Programme Schedule;M&E;Construction;M&E Construction;Demin System;(00GHC-01) Demineralised Water Storage System",1,2,0.0000013663,0.0026449644,0.0014242116,4,0.6,0.0002328586,0.0068493151,0.0061538462,0.0020625,0.0067885117,0.0045045045,0.0089686099,0.6,0.0621259785
1.3.1.1.10.2-6,00GHC-01-70,"Painting/Insulation",7112,"CCGTD1_IPS",TT_Task,"58420",-,-,-,100,TK_Complete,15/05/2019,15/05/2019,01/06/2019,24/08/2019,"00GHC-01-20 FS","00GHC-01-20","00GHC-01-80 FS","00GHC-01-80",198,234,200,249,46,54,46,58,58,,"CCGT D1_Integrated Programme Schedule;M&E;Construction;M&E Construction;Demin System;(00GHC-01) Demineralised Water Storage System",1,1,0.0000005383,0.0024415056,0.0008138352,17,0.0,0.0001176893,0.0068493151,0.0030769231,0.0008125,0.0062663185,0.0025740026,0.0381165919,0.0,0.0149355383
1.3.1.1.10.2-7,00GHC-01-30,"Install Small Bore Pipe/Valves/Supports",7112,"CCGTD1_IPS",TT_Task,"58420",-,-,-,100,TK_Complete,08/04/2019,08/04/2019,23/04/2019,08/05/2019,"SI1--P4A40 FS,00GHC-01-20 FS","SI1--P4A40,00GHC-01-20","00GHC-01-50 FS","00GHC-01-50",192,229,194,233,44,53,45,54,53,,"CCGT D1_Integrated Programme Schedule;M&E;Construction;M&E Construction;Demin System;(00GHC-01) Demineralised Water Storage System",2,1,0.0000007039,0.003051882,0.001017294,15,0.0,0.000113784,0.0136986301,0.0030769231,0.0010625,0.0078328982,0.0032175032,0.033632287,0.0,0.0133353786
1.3.1.1.10.2-8,00GHC-01-50,"Line Inspection",7112,"CCGTD1_IPS",TT_Task,"58420",-,-,-,100,TK_Complete,08/05/2019,08/05/2019,13/05/2019,13/05/2019,"00GHC-01-30 FS","00GHC-01-30","00GHC-01-60 FS","00GHC-01-60",197,233,197,234,45,54,46,54,58,,"CCGT D1_Integrated Programme Schedule;M&E;Construction;M&E Construction;Demin System;(00GHC-01) Demineralised Water Storage System",1,1,0.0000010765,0.0028484232,0.0012207528,5,1.0,0.0001781042,0.0068493151,0.0030769231,0.001625,0.007310705,0.0038610039,0.0112107623,1.0,0.0396904589
1.3.1.1.10.3,58419,"(00GHC-02) Demineralised Water Supply System up to UMC",7112,"CCGTD1_IPS",WBS,"58418",,,,100,Complete,21/02/2019,31/10/2018,06/09/2019,12/10/2019,,,,,186,206,214,256,43,48,50,59,,,"CCGT D1_Integrated Programme Schedule;M&E;Construction;M&E Construction;Demin System"
1.3.1.1.10.3-1,00GHC-02-40,"EC+I",7112,"CCGTD1_IPS",TT_Task,"58419",-,-,-,100,TK_Complete,22/06/2019,15/05/2019,23/07/2019,21/09/2019,"00GHC-02-20 FS","00GHC-02-20","00GHC-02-80 FF","00GHC-02-80",203,234,207,253,47,54,48,59,64,,"CCGT D1_Integrated Programme Schedule;M&E;Construction;M&E Construction;Demin System;(00GHC-02) Demineralised Water Supply System up to UMC",1,1,0.0000063465,0.0024415056,0.0134282808,31,0.0,0.0002049835,0.0068493151,0.0030769231,0.0095802083,0.0062663185,0.0424710425,0.0695067265,0.0,0.0507041867
1.3.1.1.10.3-2,00GHC-02-20,"Install Large Bore Pipe/Valves/Supports",7112,"CCGTD1_IPS",TT_Task,"58419",-,-,-,100,TK_Complete,21/02/2019,31/10/2018,06/04/2019,07/06/2019,"A2380 FS,SI1--P4A40 FS,SI---P4I40 FS,SI1--P4H40 FS,SI-GHD4-62 FS,SUB-BOP-160 FS,KD_D06 FS,KD_E04 FS,KD_E05 FS,A1010 FS,KD_C17 FS,KD_E02 FF","A2380,SI1--P4A40,SI---P4I40,SI1--P4H40,SI-GHD4-62,SUB-BOP-160,KD_D06,KD_E04,KD_E05,A1010,KD_C17,KD_E02","00GHC-02-30 FS,00GHC-02-40 FS","00GHC-02-30,00GHC-02-40",186,206,192,238,43,48,44,55,47,,"CCGT D1_Integrated Programme Schedule;M&E;Construction;M&E Construction;Demin System;(00GHC-02) Demineralised Water Supply System up to UMC",12,2,0.000019306,0.0034587996,0.013224822,44,0.0,0.0001781738,0.0821917808,0.0061538462,0.0291427083,0.0088772846,0.0418275418,0.0986547085,0.0,0.0397189832
1.3.1.1.10.3-3,00GHC-02-80,"Pre-Commissioning/Flushing/Cleaning",7112,"CCGTD1_IPS",TT_Task,"58419",-,-,-,100,TK_Complete,02/09/2019,02/09/2019,06/09/2019,12/10/2019,"00GHC-02-60 FS,00GHC-02-70 FF,00GHC-02-40 FF","00GHC-02-60,00GHC-02-70,00GHC-02-40","TOP2190 FS","TOP2190",213,250,214,256,49,58,50,59,74,,"CCGT D1_Integrated Programme Schedule;M&E;Construction;M&E Construction;Demin System;(00GHC-02) Demineralised Water Supply System up to UMC",3,1,0.0000058911,0.0022380468,0.0144455748,4,0.0,0.0005276386,0.0205479452,0.0030769231,0.0088927083,0.0057441253,0.0456885457,0.0089686099,0.0,0.1829114874
1.3.1.1.10.3-4,00GHC-02-60,"Hydro Test",7112,"CCGTD1_IPS",TT_Task,"58419",-,-,-,100,TK_Complete,20/06/2019,22/06/2019,25/06/2019,05/07/2019,"00GHC-02-50 FS","00GHC-02-50","00GHC-02-80 FS","00GHC-02-80",203,240,203,242,47,56,47,56,64,,"CCGT D1_Integrated Programme Schedule;M&E;Construction;M&E Construction;Demin System;(00GHC-02) Demineralised Water Supply System up to UMC",1,1,0.0000004968,0.0024415056,0.0138351984,5,0.2,0.0001804123,0.0068493151,0.0030769231,0.00075,0.0062663185,0.0437580438,0.0112107623,0.2,0.0406361957
1.3.1.1.10.3-5,00GHC-02-70,"Painting/Insulation",7112,"CCGTD1_IPS",TT_Task,"58419",-,-,-,100,TK_Complete,24/06/2019,16/05/2019,12/07/2019,24/08/2019,"00GHC-02-30 FS","00GHC-02-30","00GHC-02-80 FF","00GHC-02-80",203,234,206,249,47,54,48,58,64,,"CCGT D1_Integrated Programme Schedule;M&E;Construction;M&E Construction;Demin System;(00GHC-02) Demineralised Water Supply System up to UMC",1,1,0.0000004968,0.0024415056,0.0136317396,18,0.0,0.0001389345,0.0068493151,0.0030769231,0.00075,0.0062663185,0.0431145431,0.0403587444,0.0,0.0236407358
1.3.1.1.10.3-6,00GHC-02-30,"Install Small Bore Pipe/Valves/Supports",7112,"CCGTD1_IPS",TT_Task,"58419",-,-,-,100,TK_Complete,17/06/2019,08/05/2019,24/06/2019,08/06/2019,"00GHC-02-20 FS","00GHC-02-20","00GHC-02-70 FS,00GHC-02-50 FF","00GHC-02-70,00GHC-02-50",202,233,203,238,47,54,47,55,63,,"CCGT D1_Integrated Programme Schedule;M&E;Construction;M&E Construction;Demin System;(00GHC-02) Demineralised Water Supply System up to UMC",1,2,0.000008198,0.003051882,0.0134282808,7,0.0,0.0001091811,0.0068493151,0.0061538462,0.012375,0.0078328982,0.0424710425,0.0156950673,0.0,0.0114493325
1.3.1.1.10.3-7,00GHC-02-50,"Line Inspection",7112,"CCGTD1_IPS",TT_Task,"58419",-,-,-,100,TK_Complete,31/05/2019,01/06/2019,11/06/2019,17/06/2019,"00GHC-02-30 FF","00GHC-02-30","00GHC-02-60 FS","00GHC-02-60",200,237,201,239,46,55,47,55,60,,"CCGT D1_Integrated Programme Schedule;M&E;Construction;M&E Construction;Demin System;(00GHC-02) Demineralised Water Supply System up to UMC",1,1,0.0000027741,0.0026449644,0.0136317396,11,0.6,0.0001164972,0.0068493151,0.0030769231,0.0041875,0.0067885117,0.0431145431,0.0246636771,0.6,0.0144471163
1.3.1.1.11,58412,"Water Systems",7112,"CCGTD1_IPS",WBS,"58325",,,,100,Complete,26/02/2019,22/02/2019,17/12/2019,30/11/2019,,,,,186,223,228,263,43,52,53,61,,,"CCGT D1_Integrated Programme Schedule;M&E;Construction;M&E Construction"
1.3.1.1.11.1,58413,"Water Systems (G)",7112,"CCGTD1_IPS",WBS,"58412",,,,100,Complete,26/02/2019,22/02/2019,17/12/2019,30/11/2019,,,,,186,223,228,263,43,52,53,61,,,"CCGT D1_Integrated Programme Schedule;M&E;Construction;M&E Construction;Water Systems"
1.3.1.1.11.1.1,58417,"(00GHD-01) Service Water Distribution System",7112,"CCGTD1_IPS",WBS,"58413",,,,100,Complete,26/02/2019,22/02/2019,03/12/2019,25/11/2019,,,,,186,223,226,262,43,52,52,61,,,"CCGT D1_Integrated Programme Schedule;M&E;Construction;M&E Construction;Water Systems;Water Systems (G)"
1.3.1.1.11.1.1-1,00GHD-190,"NDE",7112,"CCGTD1_IPS",TT_Task,"58417",-,-,-,100,TK_Complete,30/04/2019,22/05/2019,12/06/2019,12/10/2019,"00GHD-120 SS,00GHD-130 FF","00GHD-120,00GHD-130","00GHD-150 FS","00GHD-150",195,235,202,256,45,55,47,59,56,,"CCGT D1_Integrated Programme Schedule;M&E;Construction;M&E Construction;Water Systems;Water Systems (G);(00GHD-01) Service Water Distribution System",2,1,0.0000052997,0.0022380468,0.0130213632,43,0.0,0.0002295723,0.0136986301,0.0030769231,0.008,0.0057441253,0.0411840412,0.0964125561,0.0,0.0607794067
1.3.1.1.11.1.1-2,00GHD-110,"Install Equipment/Skids/Pumps",7112,"CCGTD1_IPS",TT_Task,"58417",-,-,-,100,TK_Complete,01/04/2019,01/04/2019,12/04/2019,24/08/2019,"SI-GHD4-62 FS,SUB-BOP-160 FS,KD_D06 FS,KD_E03 FS,KD_E04 FS,KD_E05 FS,A1010 FS,KD_C17 FS","SI-GHD4-62,SUB-BOP-160,KD_D06,KD_E03,KD_E04,KD_E05,A1010,KD_C17","00GHD-120 FS","00GHD-120",191,228,193,249,44,53,45,58,50,,"CCGT D1_Integrated Programme Schedule;M&E;Construction;M&E Construction;Water Systems;Water Systems (G);(00GHD-01) Service Water Distribution System",8,1,0.0000189423,0.0032553408,0.0118006104,11,0.0,0.0001000917,0.0547945205,0.0030769231,0.02859375,0.0083550914,0.0373230373,0.0246636771,0.0,0.0077249572
1.3.1.1.11.1.1-3,00GHD-120,"Install Large Bore Pipe/Valves/Supports",7112,"CCGTD1_IPS",TT_Task,"58417",-,-,-,100,TK_Complete,26/02/2019,22/02/2019,24/04/2019,09/10/2019,"SI1--P4A40 FS,00GHD-110 FS,SI1--P4H40 FS,SI---P4I40 FS","SI1--P4A40,00GHD-110,SI1--P4H40,SI---P4I40","00GHD-190 SS,00GHD-130 FS,00GHD-170 FS","00GHD-190,00GHD-130,00GHD-170",186,223,195,255,43,52,45,59,48,,"CCGT D1_Integrated Programme Schedule;M&E;Construction;M&E Construction;Water Systems;Water Systems (G);(00GHD-01) Service Water Distribution System",4,3,0.0000182674,0.003051882,0.0126144456,57,0.0,0.0001719793,0.0273972603,0.0092307692,0.027575,0.0078328982,0.0398970399,0.1278026906,0.0,0.0371808004
1.3.1.1.11.1.1-4,00GHD-180,"Pre-Commissioning/Flushing/Cleaning",7112,"CCGTD1_IPS",TT_Task,"58417",-,-,-,100,TK_Complete,14/10/2019,10/10/2019,18/10/2019,25/11/2019,"00GHD-170 FF,00GHD-140 FF,00GHD-160 FS","00GHD-170,00GHD-140,00GHD-160","SC1230 FS,SC1240 FS","SC1230,SC1240",219,255,220,262,51,59,51,61,79,,"CCGT D1_Integrated Programme Schedule;M&E;Construction;M&E Construction;Water Systems;Water Systems (G);(00GHD-01) Service Water Distribution System",3,2,0.0000034151,0.0016276704,0.02034588,4,0.0,0.0005505653,0.0205479452,0.0061538462,0.0051552083,0.0041775457,0.0643500644,0.0089686099,0.0,0.1923056696
1.3.1.1.11.1.1-5,00GHD-140,"EC+I",7112,"CCGTD1_IPS",TT_Task,"58417",-,-,-,100,TK_Complete,10/07/2019,12/06/2019,22/07/2019,11/10/2019,"SI-BZK4-25 FS,SI-BZK4-58 FS,CP-BZP7B15 FS,SI-C-4C40 FS,00GHD-130 FS,SI-C--4B40 FS,SI-CP-4-40 FS,EDS.1090 FS","SI-BZK4-25,SI-BZK4-58,CP-BZP7B15,SI-C-4C40,00GHD-130,SI-C--4B40,SI-CP-4-40,EDS.1090","00GHD-180 FF","00GHD-180",206,238,207,256,48,55,48,59,66,,"CCGT D1_Integrated Programme Schedule;M&E;Construction;M&E Construction;Water Systems;Water Systems (G);(00GHD-01) Service Water Distribution System",8,1,0.0000024132,0.0018311292,0.019328586,12,0.0,0.0001178198,0.0547945205,0.0030769231,0.0036427083,0.0046997389,0.0611325611,0.0269058296,0.0,0.0149890212
1.3.1.1.11.1.1-6,00GHD-160,"Hydro Test",7112,"CCGTD1_IPS",TT_Task,"58417",-,-,-,100,TK_Complete,30/11/2019,01/11/2019,03/12/2019,08/11/2019,"00GHD-150 FS","00GHD-150","00GHD-180 FS","00GHD-180",226,259,226,260,52,60,52,60,84,,"CCGT D1_Integrated Programme Schedule;M&E;Construction;M&E Construction;Water Systems;Water Systems (G);(00GHD-01) Service Water Distribution System",1,1,0.0000007453,0.0018311292,0.0134282808,3,0.6,0.000316883,0.0068493151,0.0030769231,0.001125,0.0046997389,0.0424710425,0.0067264574,0.6,0.0965547793
1.3.1.1.11.1.1-7,00GHD-170,"Painting/Insulation",7112,"CCGTD1_IPS",TT_Task,"58417",-,-,-,100,TK_Complete,29/06/2019,14/06/2019,24/07/2019,08/11/2019,"00GHD-120 FS","00GHD-120","00GHD-180 FF","00GHD-180",204,239,208,260,47,55,48,60,65,,"CCGT D1_Integrated Programme Schedule;M&E;Construction;M&E Construction;Water Systems;Water Systems (G);(00GHD-01) Service Water Distribution System",1,1,0.0000032792,0.0018311292,0.0128179044,25,0.0,0.0001164295,0.0068493151,0.0030769231,0.00495,0.0046997389,0.0405405405,0.0560538117,0.0,0.0144193474
1.3.1.1.11.1.1-8,00GHD-130,"Install Small Bore Pipe/Valves/Supports",7112,"CCGTD1_IPS",TT_Task,"58417",-,-,-,100,TK_Complete,07/05/2019,07/05/2019,12/06/2019,11/10/2019,"00GHD-120 FS","00GHD-120","00GHD-140 FS,00GHD-190 FF","00GHD-140,00GHD-190",196,233,202,256,45,54,47,59,57,,"CCGT D1_Integrated Programme Schedule;M&E;Construction;M&E Construction;Water Systems;Water Systems (G);(00GHD-01) Service Water Distribution System",1,2,0.000002567,0.0026449644,0.0128179044,36,0.0,0.0001319134,0.0068493151,0.0061538462,0.003875,0.0067885117,0.0405405405,0.0807174888,0.0,0.0207638603
1.3.1.1.11.1.1-9,00GHD-150,"Line Inspection",7112,"CCGTD1_IPS",TT_Task,"58417",-,-,-,100,TK_Complete,04/10/2019,18/10/2019,10/10/2019,22/10/2019,"00GHD-190 FS","00GHD-190","00GHD-160 FS","00GHD-160",218,257,219,257,50,59,51,60,78,,"CCGT D1_Integrated Programme Schedule;M&E;Construction;M&E Construction;Water Systems;Water Systems (G);(00GHD-01) Service Water Distribution System",1,1,0.0000030639,0.002034588,0.013224822,6,1.0,0.000276699,0.0068493151,0.0030769231,0.004625,0.0052219321,0.0418275418,0.0134529148,1.0,0.0800894971
1.3.1.1.11.1.2,58416,"(00GHD-02) Service Water Distribution Inside Power Block",7112,"CCGTD1_IPS",WBS,"58413",,,,100,Complete,11/03/2019,22/03/2019,10/12/2019,25/11/2019,,,,,188,227,227,262,44,52,53,61,,,"CCGT D1_Integrated Programme Schedule;M&E;Construction;M&E Construction;Water Systems;Water Systems (G)"
1.3.1.1.11.1.2-1,00GHD-02-10,"Install Equipment/Skids/Pumps",7112,"CCGTD1_IPS",TT_Task,"58416",-,-,-,100,TK_Complete,01/04/2019,01/04/2019,12/04/2019,17/08/2019,"SI-GHD4-62 FS,SUB-BOP-160 FS,KD_D06 FS,KD_E03 FS,KD_E04 FS,KD_E05 FS,A1010 FS,KD_C27 FS","SI-GHD4-62,SUB-BOP-160,KD_D06,KD_E03,KD_E04,KD_E05,A1010,KD_C27","00GHD-02-60 FS,GKB10 SS,00GHD-02-40 FS,00GHD-02-20 FS","00GHD-02-60,GKB10,00GHD-02-40,00GHD-02-20",191,228,193,248,44,53,45,57,50,,"CCGT D1_Integrated Programme Schedule;M&E;Construction;M&E Construction;Water Systems;Water Systems (G);(00GHD-02) Service Water Distribution Inside Power Block",8,4,0.0000219896,0.00508647,0.0118006104,11,0.0,0.0001035801,0.0547945205,0.0123076923,0.03319375,0.0130548303,0.0373230373,0.0246636771,0.0,0.0091543436
1.3.1.1.11.1.2-2,00GHD-02-40,"EC+I",7112,"CCGTD1_IPS",TT_Task,"58416",-,-,-,100,TK_Complete,12/06/2019,12/06/2019,08/07/2019,11/10/2019,"00GHD-02-10 FS,00GHD-02-30 FF","00GHD-02-10,00GHD-02-30","00GHD-02-80 FF","00GHD-02-80",202,238,205,256,47,55,48,59,62,,"CCGT D1_Integrated Programme Schedule;M&E;Construction;M&E Construction;Water Systems;Water Systems (G);(00GHD-02) Service Water Distribution Inside Power Block",2,1,0.0000030453,0.002034588,0.0124109868,26,0.0,0.0001645576,0.0136986301,0.0030769231,0.004596875,0.0052219321,0.0392535393,0.0582959641,0.0,0.0341397516
1.3.1.1.11.1.2-3,00GHD-02-60,"Hydro Test",7112,"CCGTD1_IPS",TT_Task,"58416",-,-,-,100,TK_Complete,06/12/2019,01/11/2019,10/12/2019,08/11/2019,"00GHD-02-10 FS,00GHD-02-50 FS,00GHD-02-70 FS","00GHD-02-10,00GHD-02-50,00GHD-02-70","00GHD-02-80 FF","00GHD-02-80",227,259,227,260,53,60,53,60,85,,"CCGT D1_Integrated Programme Schedule;M&E;Construction;M&E Construction;Water Systems;Water Systems (G);(00GHD-02) Service Water Distribution Inside Power Block",3,1,0.0000034593,0.002034588,0.0130213632,4,0.6,0.0003119065,0.0205479452,0.0030769231,0.005221875,0.0052219321,0.0411840412,0.0089686099,0.6,0.0945156695
1.3.1.1.11.1.2-4,00GHD-02-90,"NDE",7112,"CCGTD1_IPS",TT_Task,"58416",-,-,-,100,TK_Complete,24/05/2019,24/05/2019,18/06/2019,12/10/2019,"00GHD-02-30 FF","00GHD-02-30","00GHD-02-50 FF","00GHD-02-50",199,236,202,256,46,55,47,59,59,,"CCGT D1_Integrated Programme Schedule;M&E;Construction;M&E Construction;Water Systems;Water Systems (G);(00GHD-02) Service Water Distribution Inside Power Block",1,1,0.000002567,0.0024415056,0.0124109868,25,0.0,0.0001379014,0.0068493151,0.0030769231,0.003875,0.0062663185,0.0392535393,0.0560538117,0.0,0.0232174404
1.3.1.1.11.1.2-5,00GHD-02-20,"Install Large Bore Pipe/Valves/Supports (Inside+Outside)",7112,"CCGTD1_IPS",TT_Task,"58416",-,-,-,100,TK_Complete,11/03/2019,22/03/2019,30/04/2019,08/10/2019,"00GHD-02-10 FS","00GHD-02-10","00GHD-02-30 FS,00GHD-02-70 FF","00GHD-02-30,00GHD-02-70",188,227,195,255,44,52,45,59,48,,"CCGT D1_Integrated Programme Schedule;M&E;Construction;M&E Construction;Water Systems;Water Systems (G);(00GHD-02) Service Water Distribution Inside Power Block",1,2,0.0000097713,0.0032553408,0.0120040692,50,0.0,0.0001281419,0.0068493151,0.0061538462,0.01475,0.0083550914,0.037966538,0.1121076233,0.0,0.0192184878
1.3.1.1.11.1.2-6,00GHD-02-80,"Pre-Commissioning/Flushing/Cleaning",7112,"CCGTD1_IPS",TT_Task,"58416",-,-,-,100,TK_Complete,06/12/2019,20/11/2019,10/12/2019,25/11/2019,"00GHD-02-70 FF,00GHD-02-40 FF,00GHD-02-60 FF","00GHD-02-70,00GHD-02-40,00GHD-02-60","TOP1070 FS","TOP1070",227,261,227,262,53,61,53,61,85,,"CCGT D1_Integrated Programme Schedule;M&E;Construction;M&E Construction;Water Systems;Water Systems (G);(00GHD-02) Service Water Distribution Inside Power Block",3,1,0.0000054281,0.0018311292,0.0134282808,4,1.0,0.0005447201,0.0205479452,0.0030769231,0.00819375,0.0046997389,0.0424710425,0.0089686099,1.0,0.1899106088
1.3.1.1.11.1.2-7,00GHD-02-70,"Painting/Insulation",7112,"CCGTD1_IPS",TT_Task,"58416",-,-,-,100,TK_Complete,10/06/2019,03/06/2019,05/07/2019,08/11/2019,"00GHD-02-20 FF","00GHD-02-20","00GHD-02-80 FF,00GHD-02-60 FS","00GHD-02-80,00GHD-02-60",201,237,205,260,47,55,47,60,62,,"CCGT D1_Integrated Programme Schedule;M&E;Construction;M&E Construction;Water Systems;Water Systems (G);(00GHD-02) Service Water Distribution Inside Power Block",1,2,0.0000004554,0.0022380468,0.012207528,25,0.0,0.0001357797,0.0068493151,0.0061538462,0.0006875,0.0057441253,0.0386100386,0.0560538117,0.0,0.022348056
1.3.1.1.11.1.2-8,00GHD-02-30,"Install Small Bore Pipe/Valves/Supports (Inside+Outside)",7112,"CCGTD1_IPS",TT_Task,"58416",-,-,-,100,TK_Complete,17/05/2019,17/05/2019,11/06/2019,11/10/2019,"00GHD-02-20 FS","00GHD-02-20","00GHD-02-90 FF,00GHD-02-40 FF","00GHD-02-90,00GHD-02-40",198,235,201,256,46,54,47,59,59,,"CCGT D1_Integrated Programme Schedule;M&E;Construction;M&E Construction;Water Systems;Water Systems (G);(00GHD-02) Service Water Distribution Inside Power Block",1,2,0.0000050099,0.0028484232,0.012207528,25,0.0,0.0001357797,0.0068493151,0.0061538462,0.0075625,0.007310705,0.0386100386,0.0560538117,0.0,0.022348056
1.3.1.1.11.1.2-9,00GHD-02-50,"Line Inspection",7112,"CCGTD1_IPS",TT_Task,"58416",-,-,-,100,TK_Complete,30/09/2019,19/10/2019,04/10/2019,30/10/2019,"00GHD-02-90 FF","00GHD-02-90","00GHD-02-60 FS","00GHD-02-60",217,257,218,258,50,60,50,60,78,,"CCGT D1_Integrated Programme Schedule;M&E;Construction;M&E Construction;Water Systems;Water Systems (G);(00GHD-02) Service Water Distribution Inside Power Block",1,1,0.0000004968,0.0022380468,0.0126144456,4,0.2,0.0001986395,0.0068493151,0.0030769231,0.00075,0.0057441253,0.0398970399,0.0089686099,0.2,0.0481047304
1.3.1.1.11.1.3,58415,"(00GKB-02) Drinking Water Distribution Inside Power Block",7112,"CCGTD1_IPS",WBS,"58413",,,,100,Complete,01/04/2019,01/04/2019,13/12/2019,25/11/2019,,,,,191,228,228,262,44,53,53,61,,,"CCGT D1_Integrated Programme Schedule;M&E;Construction;M&E Construction;Water Systems;Water Systems (G)"
1.3.1.1.11.1.3-1,00GKB-02-10,"Install Equipment/Skids/Pumps",7112,"CCGTD1_IPS",TT_Task,"58415",-,-,-,100,TK_Complete,01/04/2019,01/04/2019,15/04/2019,24/08/2019,"SI-GHD4-62 FS,SUB-BOP-160 FS,KD_D06 FS,KD_E03 FS,KD_E04 FS,KD_E05 FS,A1010 FS,KD_C27 FS","SI-GHD4-62,SUB-BOP-160,KD_D06,KD_E03,KD_E04,KD_E05,A1010,KD_C27","00GKB-02-20 FS","00GKB-02-20",191,228,193,249,44,53,45,58,50,,"CCGT D1_Integrated Programme Schedule;M&E;Construction;M&E Construction;Water Systems;Water Systems (G);(00GKB-02) Drinking Water Distribution Inside Power Block",8,1,0.0000186152,0.0032553408,0.0118006104,14,0.0,0.0001096732,0.0547945205,0.0030769231,0.0281,0.0083550914,0.0373230373,0.0313901345,0.0,0.0116509827
1.3.1.1.11.1.3-2,00GKB-02-20,"Install Large Bore Pipe/Valves/Supports",7112,"CCGTD1_IPS",TT_Task,"58415",-,-,-,100,TK_Complete,15/04/2019,15/04/2019,25/05/2019,08/10/2019,"00GKB-02-10 FS,SI1--P4H40 FS,SI-GHD4-62 FS,SI1--P4A40 FS,SI---P4I40 FS","00GKB-02-10,SI1--P4H40,SI-GHD4-62,SI1--P4A40,SI---P4I40","00GKB-02-30 FS,00GKB-02-40 FF,00GKB-02-70 FS","00GKB-02-30,00GKB-02-40,00GKB-02-70",193,230,199,255,45,53,46,59,54,,"CCGT D1_Integrated Programme Schedule;M&E;Construction;M&E Construction;Water Systems;Water Systems (G);(00GKB-02) Drinking Water Distribution Inside Power Block",5,3,0.0000183005,0.003051882,0.0126144456,40,0.0,0.0001895067,0.0342465753,0.0092307692,0.027625,0.0078328982,0.0398970399,0.0896860987,0.0,0.044362618
1.3.1.1.11.1.3-3,00GKB-02-80,"Pre-Commissioning/Flushing/Cleaning",7112,"CCGTD1_IPS",TT_Task,"58415",-,-,-,100,TK_Complete,10/12/2019,20/11/2019,13/12/2019,25/11/2019,"00GKB-02-40 FF,00GKB-02-70 FF,00GKB-02-60 FF","00GKB-02-40,00GKB-02-70,00GKB-02-60","TOP1080 FS","TOP1080",227,261,228,262,53,61,53,61,85,,"CCGT D1_Integrated Programme Schedule;M&E;Construction;M&E Construction;Water Systems;Water Systems (G);(00GKB-02) Drinking Water Distribution Inside Power Block",3,1,0.0000051341,0.0018311292,0.0138351984,3,0.8,0.000513743,0.0205479452,0.0030769231,0.00775,0.0046997389,0.0437580438,0.0067264574,0.8,0.1772177933
1.3.1.1.11.1.3-4,00GKB-02-40,"EC+I",7112,"CCGTD1_IPS",TT_Task,"58415",-,-,-,100,TK_Complete,05/06/2019,07/06/2019,05/07/2019,11/10/2019,"00GKB-02-20 FF","00GKB-02-20","00GKB-02-80 FF","00GKB-02-80",201,238,205,256,46,55,47,59,61,,"CCGT D1_Integrated Programme Schedule;M&E;Construction;M&E Construction;Water Systems;Water Systems (G);(00GKB-02) Drinking Water Distribution Inside Power Block",1,1,0.0000029397,0.002034588,0.0128179044,30,0.0,0.0001545651,0.0068493151,0.0030769231,0.0044375,0.0052219321,0.0405405405,0.067264574,0.0,0.03004534
1.3.1.1.11.1.3-5,00GKB-02-60,"Hydro Test",7112,"CCGTD1_IPS",TT_Task,"58415",-,-,-,100,TK_Complete,06/12/2019,01/11/2019,13/12/2019,08/11/2019,"00GKB-02-50 FS,00GKB-02-70 FS","00GKB-02-50,00GKB-02-70","00GKB-02-80 FF","00GKB-02-80",227,259,228,260,53,60,53,60,85,,"CCGT D1_Integrated Programme Schedule;M&E;Construction;M&E Construction;Water Systems;Water Systems (G);(00GKB-02) Drinking Water Distribution Inside Power Block",2,1,0.0000008281,0.002034588,0.0134282808,7,1.0,0.0003158138,0.0136986301,0.0030769231,0.00125,0.0052219321,0.0424710425,0.0156950673,1.0,0.09611668
1.3.1.1.11.1.3-6,00GKB-02-70,"Painting/Insulation",7112,"CCGTD1_IPS",TT_Task,"58415",-,-,-,100,TK_Complete,06/07/2019,14/06/2019,24/07/2019,08/11/2019,"00GKB-02-20 FS","00GKB-02-20","00GKB-02-80 FF,00GKB-02-60 FS","00GKB-02-80,00GKB-02-60",205,239,208,260,47,55,48,60,65,,"CCGT D1_Integrated Programme Schedule;M&E;Construction;M&E Construction;Water Systems;Water Systems (G);(00GKB-02) Drinking Water Distribution Inside Power Block",1,2,0.0000055481,0.0022380468,0.0128179044,18,0.0,0.0001252345,0.0068493151,0.0061538462,0.008375,0.0057441253,0.0405405405,0.0403587444,0.0,0.018027204
1.3.1.1.11.1.3-7,00GKB-02-30,"Install Small Bore Pipe/Valves/Supports",7112,"CCGTD1_IPS",TT_Task,"58415",-,-,-,100,TK_Complete,24/06/2019,01/06/2019,12/07/2019,11/10/2019,"00GKB-02-20 FS","00GKB-02-20","00GKB-02-50 FS","00GKB-02-50",203,237,206,256,47,55,48,59,64,,"CCGT D1_Integrated Programme Schedule;M&E;Construction;M&E Construction;Water Systems;Water Systems (G);(00GKB-02) Drinking Water Distribution Inside Power Block",1,1,0.0000026084,0.0024415056,0.0128179044,18,0.0,0.0001252345,0.0068493151,0.0030769231,0.0039375,0.0062663185,0.0405405405,0.0403587444,0.0,0.018027204
1.3.1.1.11.1.3-8,00GKB-02-50,"Line Inspection",7112,"CCGTD1_IPS",TT_Task,"58415",-,-,-,100,TK_Complete,30/09/2019,08/10/2019,11/10/2019,31/10/2019,"00GKB-02-30 FS","00GKB-02-30","00GKB-02-60 FS","00GKB-02-60",217,255,219,258,50,59,51,60,78,,"CCGT D1_Integrated Programme Schedule;M&E;Construction;M&E Construction;Water Systems;Water Systems (G);(00GKB-02) Drinking Water Distribution Inside Power Block",1,1,0.0000004554,0.0022380468,0.0130213632,11,0.0,0.0001878638,0.0068493151,0.0030769231,0.0006875,0.0057441253,0.0411840412,0.0246636771,0.0,0.0436894262
1.3.1.1.11.1.4,58414,"(00GKB-01) Drinking Water Distribution System",7112,"CCGTD1_IPS",WBS,"58413",,,,100,Complete,01/04/2019,01/04/2019,17/12/2019,30/11/2019,,,,,191,228,228,263,44,53,53,61,,,"CCGT D1_Integrated Programme Schedule;M&E;Construction;M&E Construction;Water Systems;Water Systems (G)"
1.3.1.1.11.1.4-1,GKB10,"Install Equipment/Skids/Pumps",7112,"CCGTD1_IPS",TT_Task,"58414",-,-,-,100,TK_Complete,01/04/2019,01/04/2019,15/04/2019,24/08/2019,"SI-GHD4-62 FS,00GHD-02-10 SS,SUB-BOP-160 FS,KD_D06 FS,KD_E03 FS,KD_E04 FS,KD_E05 FS,A1010 FS,KD_C17 FS","SI-GHD4-62,00GHD-02-10,SUB-BOP-160,KD_D06,KD_E03,KD_E04,KD_E05,A1010,KD_C17","GKB20 FS","GKB20",191,228,193,249,44,53,45,58,50,,"CCGT D1_Integrated Programme Schedule;M&E;Construction;M&E Construction;Water Systems;Water Systems (G);(00GKB-01) Drinking Water Distribution System",9,1,0.0000168307,0.003051882,0.012207528,14,0.0,0.0001183663,0.0616438356,0.0030769231,0.02540625,0.0078328982,0.0386100386,0.0313901345,0.0,0.0152129403
1.3.1.1.11.1.4-2,GKB20,"Install Large Bore Pipe/Valves/Supports",7112,"CCGTD1_IPS",TT_Task,"58414",-,-,-,100,TK_Complete,15/04/2019,15/04/2019,25/05/2019,12/10/2019,"SI1--P4H40 FS,SI-GHD4-62 FS,SI1--P4A40 FS,SI---P4I40 FS,GKB10 FS","SI1--P4H40,SI-GHD4-62,SI1--P4A40,SI---P4I40,GKB10","GKB30 FS,GKB70 FS","GKB30,GKB70",193,230,199,256,45,53,46,59,54,,"CCGT D1_Integrated Programme Schedule;M&E;Construction;M&E Construction;Water Systems;Water Systems (G);(00GKB-01) Drinking Water Distribution System",5,2,0.0000160937,0.0028484232,0.0130213632,40,0.0,0.0001969077,0.0342465753,0.0061538462,0.02429375,0.007310705,0.0411840412,0.0896860987,0.0,0.0473951395
1.3.1.1.11.1.4-3,GKB80,"Pre-Commissioning/Flushing/Cleaning",7112,"CCGTD1_IPS",TT_Task,"58414",-,-,-,100,TK_Complete,23/10/2019,12/10/2019,29/10/2019,30/11/2019,"GKB40 FF,GKB60 FS,GKB70 FF","GKB40,GKB60,GKB70","SC1240 FS,SC1230 FS","SC1240,SC1230",221,256,221,263,51,59,51,61,80,,"CCGT D1_Integrated Programme Schedule;M&E;Construction;M&E Construction;Water Systems;Water Systems (G);(00GKB-01) Drinking Water Distribution System",3,2,0.0000030459,0.0016276704,0.0154628688,6,0.0,0.0005223811,0.0205479452,0.0061538462,0.0045979167,0.0041775457,0.0489060489,0.0134529148,0.0,0.1807572663
1.3.1.1.11.1.4-4,GKB40,"EC+I",7112,"CCGTD1_IPS",TT_Task,"58414",-,-,-,100,TK_Complete,08/07/2019,06/06/2019,19/07/2019,08/10/2019,"SI-BZK4-25 FS,EDS.1090 FS,GKB30 FS,SI-C-4C40 FS,SI-BZK4-58 FS,SI-C--4B40 FS,SI-CP-4-40 FS","SI-BZK4-25,EDS.1090,GKB30,SI-C-4C40,SI-BZK4-58,SI-C--4B40,SI-CP-4-40","GKB80 FF","GKB80",205,237,207,255,48,55,48,59,65,,"CCGT D1_Integrated Programme Schedule;M&E;Construction;M&E Construction;Water Systems;Water Systems (G);(00GKB-01) Drinking Water Distribution System",7,1,0.0000010503,0.0018311292,0.0146490336,11,0.0,0.0001687077,0.0479452055,0.0030769231,0.0015854167,0.0046997389,0.0463320463,0.0246636771,0.0,0.0358402327
1.3.1.1.11.1.4-5,GKB60,"Hydro Test",7112,"CCGTD1_IPS",TT_Task,"58414",-,-,-,100,TK_Complete,05/12/2019,08/11/2019,17/12/2019,19/11/2019,"GKB50 FS,GKB70 FF","GKB50,GKB70","GKB80 FS","GKB80",227,260,228,261,53,60,53,61,85,,"CCGT D1_Integrated Programme Schedule;M&E;Construction;M&E Construction;Water Systems;Water Systems (G);(00GKB-01) Drinking Water Distribution System",2,1,0.0000003726,0.0018311292,0.0138351984,12,1.0,0.0002966384,0.0136986301,0.0030769231,0.0005625,0.0046997389,0.0437580438,0.0269058296,1.0,0.0882596039
1.3.1.1.11.1.4-6,GKB70,"Painting/Insulation",7112,"CCGTD1_IPS",TT_Task,"58414",-,-,-,100,TK_Complete,03/07/2019,07/06/2019,20/07/2019,19/11/2019,"GKB20 FS","GKB20","GKB80 FF,GKB60 FF","GKB80,GKB60",205,238,207,261,47,55,48,61,65,,"CCGT D1_Integrated Programme Schedule;M&E;Construction;M&E Construction;Water Systems;Water Systems (G);(00GKB-01) Drinking Water Distribution System",1,2,0.000006281,0.002034588,0.013224822,17,0.0,0.0001582558,0.0068493151,0.0061538462,0.00948125,0.0052219321,0.0418275418,0.0381165919,0.0,0.0315576056
1.3.1.1.11.1.4-7,GKB30,"Install Small Bore Pipe/Valves/Supports",7112,"CCGTD1_IPS",TT_Task,"58414",-,-,-,100,TK_Complete,18/06/2019,05/06/2019,08/07/2019,09/10/2019,"GKB20 FS,SI1--P4A40 FS,SI1--P4H40 FS","GKB20,SI1--P4A40,SI1--P4H40","GKB40 FS,GKB50 FF","GKB40,GKB50",202,237,205,255,47,55,48,59,63,,"CCGT D1_Integrated Programme Schedule;M&E;Construction;M&E Construction;Water Systems;Water Systems (G);(00GKB-01) Drinking Water Distribution System",3,2,0.0000054446,0.0024415056,0.013224822,20,0.0,0.0001728688,0.0205479452,0.0061538462,0.00821875,0.0062663185,0.0418275418,0.0448430493,0.0,0.0375452387
1.3.1.1.11.1.4-8,GKB50,"Line Inspection",7112,"CCGTD1_IPS",TT_Task,"58414",-,-,-,100,TK_Complete,30/09/2019,10/10/2019,09/10/2019,07/11/2019,"GKB30 FF","GKB30","GKB60 FS","GKB60",217,255,219,259,50,59,51,60,78,,"CCGT D1_Integrated Programme Schedule;M&E;Construction;M&E Construction;Water Systems;Water Systems (G);(00GKB-01) Drinking Water Distribution System",1,1,0.0000001035,0.002034588,0.0134282808,9,0.0,0.0001474759,0.0068493151,0.0030769231,0.00015625,0.0052219321,0.0424710425,0.0201793722,0.0,0.0271405571
1.3.1.1.12,58407,"Compressed Air",7112,"CCGTD1_IPS",WBS,"58325",,,,100,Complete,18/02/2019,02/01/2019,14/10/2019,23/11/2019,,,,,185,215,219,262,43,50,51,61,,,"CCGT D1_Integrated Programme Schedule;M&E;Construction;M&E Construction"
1.3.1.1.12.1,58408,"Compressed Air (SC)",7112,"CCGTD1_IPS",WBS,"58407",,,,100,Complete,18/02/2019,02/01/2019,14/10/2019,23/11/2019,,,,,185,215,219,262,43,50,51,61,,,"CCGT D1_Integrated Programme Schedule;M&E;Construction;M&E Construction;Compressed Air"
1.3.1.1.12.1.1,58411,"(00QFB) Instrument Air Distribution System",7112,"CCGTD1_IPS",WBS,"58408",,,,100,Complete,18/02/2019,02/01/2019,14/10/2019,23/11/2019,,,,,185,215,219,262,43,50,51,61,,,"CCGT D1_Integrated Programme Schedule;M&E;Construction;M&E Construction;Compressed Air;Compressed Air (SC)"
1.3.1.1.12.1.1-1,00SCA110,"Install Large Bore Pipe/Valves/Supports",7112,"CCGTD1_IPS",TT_Task,"58411",-,-,-,100,TK_Complete,18/02/2019,02/01/2019,14/05/2019,21/09/2019,"SI1--P4H40 FS,SI1SCA4-40 FS,SI-SCB4-64 FS,SI1--P4A40 FS,KD_E03 FS,SI---P4I40 FS,SUB-BOP-160 FS,KD_E04 FS,KD_E05 FS,ENG1390 FS,ENG2100 FS,ENG2170 FS,ENG1620 FS,ENG1860 FS,ENG2150 FS,ENG1330 FS,ENG1840 FS,ENG1950 FS,ENG2060 FS,ENG2140 FS,ENG1350 FS,ENG1810 FS,ENG1880 FS,ENG1900 FS,ENG2300 FS,ENG2340 FS,ENG1850 FS,ENG1970 FS,ENG1990 FS,ENG2070 FS,ENG2180 FS,ENG2220 FS,ENG2380 FS,ENG1340 FS,ENG1820 FS,ENG1870 FS,ENG2110 FS,ENG2190 FS,ENG1610 FS,ENG1630 FS,ENG1720 FS,ENG2050 FS,ENG2200 FS,ENG2330 FS,ENG2350 FS,ENG1800 FS,ENG1890 FS,ENG1940 FS,ENG1960 FS,ENG2000 FS,ENG1930 FS,ENG2040 FS,ENG2080 FS,ENG2230 FS,ENG2290 FS,ENG1980 FS,ENG2130 FS,ENG2210 FS,A1010 FS","SI1--P4H40,SI1SCA4-40,SI-SCB4-64,SI1--P4A40,KD_E03,SI---P4I40,SUB-BOP-160,KD_E04,KD_E05,ENG1390,ENG2100,ENG2170,ENG1620,ENG1860,ENG2150,ENG1330,ENG1840,ENG1950,ENG2060,ENG2140,ENG1350,ENG1810,ENG1880,ENG1900,ENG2300,ENG2340,ENG1850,ENG1970,ENG1990,ENG2070,ENG2180,ENG2220,ENG2380,ENG1340,ENG1820,ENG1870,ENG2110,ENG2190,ENG1610,ENG1630,ENG1720,ENG2050,ENG2200,ENG2330,ENG2350,ENG1800,ENG1890,ENG1940,ENG1960,ENG2000,ENG1930,ENG2040,ENG2080,ENG2230,ENG2290,ENG1980,ENG2130,ENG2210,A1010","00SCA120 FS,00SCA140 FS,00SCA130 SS,00SCA170 FS","00SCA120,00SCA140,00SCA130,00SCA170",185,215,197,253,43,50,46,59,47,,"CCGT D1_Integrated Programme Schedule;M&E;Construction;M&E Construction;Compressed Air;Compressed Air (SC);(00QFB) Instrument Air Distribution System",59,4,0.0000204949,0.0032553408,0.012207528,85,0.0,0.0025217625,0.404109589,0.0123076923,0.0309375,0.0083550914,0.0386100386,0.1905829596,0.0,1.0
1.3.1.1.12.1.1-2,00SCA140,"EC+I",7112,"CCGTD1_IPS",TT_Task,"58411",-,-,-,100,TK_Complete,29/06/2019,03/06/2019,24/07/2019,26/09/2019,"EDS.1090 FS,00SCA110 FS","EDS.1090,00SCA110","00SCA180 FS","00SCA180",204,237,208,253,47,55,48,59,65,,"CCGT D1_Integrated Programme Schedule;M&E;Construction;M&E Construction;Compressed Air;Compressed Air (SC);(00QFB) Instrument Air Distribution System",2,1,0.0000031053,0.002034588,0.0126144456,25,0.0,0.0004120307,0.0136986301,0.0030769231,0.0046875,0.0052219321,0.0398970399,0.0560538117,0.0,0.1355413966
1.3.1.1.12.1.1-3,00SCA160,"Hydro Test",7112,"CCGTD1_IPS",TT_Task,"58411",-,-,-,100,TK_Complete,30/09/2019,11/10/2019,04/10/2019,17/10/2019,"00SCA150 FS","00SCA150","00SCA180 FS","00SCA180",217,256,218,256,50,59,50,59,78,,"CCGT D1_Integrated Programme Schedule;M&E;Construction;M&E Construction;Compressed Air;Compressed Air (SC);(00QFB) Instrument Air Distribution System",1,1,0.0000012421,0.002034588,0.0130213632,4,1.0,0.0012912662,0.0068493151,0.0030769231,0.001875,0.0052219321,0.0411840412,0.0089686099,1.0,0.4958064785
1.3.1.1.12.1.1-4,00SCA170,"Painting/Insulation",7112,"CCGTD1_IPS",TT_Task,"58411",-,-,-,100,TK_Complete,29/06/2019,04/06/2019,24/07/2019,15/11/2019,"00SCA110 FS","00SCA110","00SCA180 FF","00SCA180",204,237,208,261,47,55,48,60,65,,"CCGT D1_Integrated Programme Schedule;M&E;Construction;M&E Construction;Compressed Air;Compressed Air (SC);(00QFB) Instrument Air Distribution System",1,1,0.0000030225,0.002034588,0.0124109868,25,0.0,0.0004083677,0.0068493151,0.0030769231,0.0045625,0.0052219321,0.0392535393,0.0560538117,0.0,0.1340404985
1.3.1.1.12.1.1-5,00SCA120,"Install Small Bore Pipe/Valves/Supports",7112,"CCGTD1_IPS",TT_Task,"58411",-,-,-,100,TK_Complete,08/05/2019,08/05/2019,14/06/2019,20/09/2019,"00SCA110 FS","00SCA110","00SCA130 FF","00SCA130",197,233,202,253,45,54,47,59,57,,"CCGT D1_Integrated Programme Schedule;M&E;Construction;M&E Construction;Compressed Air;Compressed Air (SC);(00QFB) Instrument Air Distribution System",1,1,0.0,0.0026449644,0.0124109868,37,0.0,0.0005653897,0.0068493151,0.0030769231,0.0,0.0067885117,0.0392535393,0.0829596413,0.0,0.1983799377
1.3.1.1.12.1.1-6,00SCA130,"NDE",7112,"CCGTD1_IPS",TT_Task,"58411",-,-,-,100,TK_Complete,01/04/2019,01/04/2019,17/06/2019,28/09/2019,"00SCA120 FF,00SCA110 SS","00SCA120,00SCA110","00SCA150 FS","00SCA150",191,228,202,254,44,53,47,59,50,,"CCGT D1_Integrated Programme Schedule;M&E;Construction;M&E Construction;Compressed Air;Compressed Air (SC);(00QFB) Instrument Air Distribution System",2,1,0.0000055481,0.0024415056,0.0126144456,77,0.0,0.00157041,0.0136986301,0.0030769231,0.008375,0.0062663185,0.0398970399,0.1726457399,0.0,0.6101850963
1.3.1.1.12.1.1-7,00SCA150,"Line Inspection",7112,"CCGTD1_IPS",TT_Task,"58411",-,-,-,100,TK_Complete,12/08/2019,28/08/2019,20/08/2019,19/09/2019,"00SCA130 FS","00SCA130","00SCA160 FS","00SCA160",210,249,211,252,49,58,49,59,69,,"CCGT D1_Integrated Programme Schedule;M&E;Construction;M&E Construction;Compressed Air;Compressed Air (SC);(00QFB) Instrument Air Distribution System",1,1,0.0000034365,0.0022380468,0.0128179044,8,0.0,0.001419276,0.0068493151,0.0030769231,0.0051875,0.0057441253,0.0405405405,0.0179372197,0.0,0.5482582567
1.3.1.1.12.1.1-8,00SCA180,"Pre-Commissioning/Flushing/Cleaning",7112,"CCGTD1_IPS",TT_Task,"58411",-,-,-,100,TK_Complete,05/10/2019,12/10/2019,14/10/2019,23/11/2019,"00SCA170 FF,00SCA140 FS,00SCA160 FS","00SCA170,00SCA140,00SCA160","TOP1350 FS","TOP1350",218,256,219,262,50,59,51,61,79,,"CCGT D1_Integrated Programme Schedule;M&E;Construction;M&E Construction;Compressed Air;Compressed Air (SC);(00QFB) Instrument Air Distribution System",3,1,0.0000057965,0.0018311292,0.0138351984,9,0.0,0.0018804703,0.0205479452,0.0030769231,0.00875,0.0046997389,0.0437580438,0.0201793722,0.0,0.7372317257
1.3.1.1.12.1.2,58410,"(00SCB) Comprssed Air Distribution System Overall Plant",7112,"CCGTD1_IPS",WBS,"58408",,,,100,Complete,17/04/2019,15/03/2019,11/10/2019,11/10/2019,,,,,194,226,219,256,45,52,51,59,,,"CCGT D1_Integrated Programme Schedule;M&E;Construction;M&E Construction;Compressed Air;Compressed Air (SC)"
1.3.1.1.12.1.2-1,00SCB70,"Hydro Test",7112,"CCGTD1_IPS",TT_Task,"58410",-,-,-,100,TK_Complete,30/09/2019,05/10/2019,04/10/2019,10/10/2019,"00SCB60 FS","00SCB60","00SCB90 FS","00SCB90",217,255,218,255,50,59,50,59,78,,"CCGT D1_Integrated Programme Schedule;M&E;Construction;M&E Construction;Compressed Air;Compressed Air (SC);(00SCB) Comprssed Air Distribution System Overall Plant",1,1,0.0000007453,0.0036622584,0.0008138352,4,1.0,0.0002232463,0.0068493151,0.0030769231,0.001125,0.0093994778,0.0025740026,0.0089686099,1.0,0.0581873461
1.3.1.1.12.1.2-2,00SCB80,"Painting",7112,"CCGTD1_IPS",TT_Task,"58410",-,-,-,100,TK_Complete,21/06/2019,03/06/2019,20/07/2019,10/10/2019,"00SCB20 FS","00SCB20","00SCB90 FF","00SCB90",203,237,207,255,47,55,48,59,64,,"CCGT D1_Integrated Programme Schedule;M&E;Construction;M&E Construction;Compressed Air;Compressed Air (SC);(00SCB) Comprssed Air Distribution System Overall Plant",1,1,0.0000002484,0.0036622584,0.0002034588,29,0.0,0.0000978135,0.0068493151,0.0030769231,0.000375,0.0093994778,0.0006435006,0.0650224215,0.0,0.0067915021
1.3.1.1.12.1.2-3,00SCB30,"Install Small Bore Pipe/Valves/Supports",7112,"CCGTD1_IPS",TT_Task,"58410",-,-,-,100,TK_Complete,24/04/2019,24/04/2019,06/06/2019,19/09/2019,"00SCB20 FS","00SCB20","00SCB40 SS","00SCB40",195,231,201,252,45,54,46,59,55,,"CCGT D1_Integrated Programme Schedule;M&E;Construction;M&E Construction;Compressed Air;Compressed Air (SC);(00SCB) Comprssed Air Distribution System Overall Plant",1,1,0.0,0.0042726348,0.0002034588,43,0.0,0.0001058152,0.0068493151,0.0030769231,0.0,0.0109660574,0.0006435006,0.0964125561,0.0,0.0100701583
1.3.1.1.12.1.2-4,00SCB40,"NDE",7112,"CCGTD1_IPS",TT_Task,"58410",-,-,-,100,TK_Complete,31/05/2019,05/06/2019,08/06/2019,28/09/2019,"00SCB20 SS,00SCB30 SS","00SCB20,00SCB30","00SCB60 FS,00SCB90 FS","00SCB60,00SCB90",200,237,201,254,46,55,47,59,60,,"CCGT D1_Integrated Programme Schedule;M&E;Construction;M&E Construction;Compressed Air;Compressed Air (SC);(00SCB) Comprssed Air Distribution System Overall Plant",2,2,0.0000011593,0.004069176,0.0004069176,8,0.0,0.0001758811,0.0136986301,0.0061538462,0.00175,0.0104438642,0.0012870013,0.0179372197,0.0,0.0387795515
1.3.1.1.12.1.2-5,00SCB60,"Line Inspection",7112,"CCGTD1_IPS",TT_Task,"58410",-,-,-,100,TK_Complete,02/08/2019,28/08/2019,10/08/2019,18/09/2019,"00SCB40 FS","00SCB40","00SCB70 FS","00SCB70",209,249,210,252,48,58,49,58,68,,"CCGT D1_Integrated Programme Schedule;M&E;Construction;M&E Construction;Compressed Air;Compressed Air (SC);(00SCB) Comprssed Air Distribution System Overall Plant",1,1,0.0000001242,0.0038657172,0.0006103764,8,0.0,0.0001667887,0.0068493151,0.0030769231,0.0001875,0.009921671,0.0019305019,0.0179372197,0.0,0.035053956
1.3.1.1.12.1.2-6,00SCB90,"Pre-Commissioning/Flushing/Cleaning",7112,"CCGTD1_IPS",TT_Task,"58410",-,-,-,100,TK_Complete,05/10/2019,05/10/2019,11/10/2019,11/10/2019,"00SCB40 FS,00SCB50 FF,00SCB70 FS,00SCB80 FF","00SCB40,00SCB50,00SCB70,00SCB80","TOP2290 FS","TOP2290",218,255,219,256,50,59,51,59,79,,"CCGT D1_Integrated Programme Schedule;M&E;Construction;M&E Construction;Compressed Air;Compressed Air (SC);(00SCB) Comprssed Air Distribution System Overall Plant",4,1,0.0000049271,0.0034587996,0.0014242116,6,1.0,0.0005078616,0.0273972603,0.0030769231,0.0074375,0.0088772846,0.0045045045,0.0134529148,1.0,0.1748079111
1.3.1.1.12.1.2-7,00SCB20,"Install Large Bore Pipe/Valves/Supports",7112,"CCGTD1_IPS",TT_Task,"58410",-,-,-,100,TK_Complete,17/04/2019,15/03/2019,10/06/2019,19/09/2019,"","","00SCB50 SS,00SCB40 SS,00SCB30 FS,00SCB80 FS","00SCB50,00SCB40,00SCB30,00SCB80",194,226,201,252,45,52,47,59,54,,"CCGT D1_Integrated Programme Schedule;M&E;Construction;M&E Construction;Compressed Air;Compressed Air (SC);(00SCB) Comprssed Air Distribution System Overall Plant",0,4,0.0,0.0048830112,0.0,54,0.0,0.0000812387,0.0,0.0123076923,0.0,0.0125326371,0.0,0.1210762332,0.0,0.0
1.3.1.1.12.1.2-8,00SCB50,"EC+I",7112,"CCGTD1_IPS",TT_Task,"58410",-,-,-,100,TK_Complete,30/04/2019,08/05/2019,10/06/2019,28/09/2019,"00SCB20 SS","00SCB20","00SCB90 FF","00SCB90",195,233,201,254,45,54,47,59,56,,"CCGT D1_Integrated Programme Schedule;M&E;Construction;M&E Construction;Compressed Air;Compressed Air (SC);(00SCB) Comprssed Air Distribution System Overall Plant",1,1,0.0000002484,0.0036622584,0.0002034588,41,0.0,0.0001046721,0.0068493151,0.0030769231,0.000375,0.0093994778,0.0006435006,0.0919282511,0.0,0.0096017789
1.3.1.1.12.1.3,58409,"(00SCA) Comprerssed Air Station",7112,"CCGTD1_IPS",WBS,"58408",,,,100,Complete,15/03/2019,15/03/2019,08/10/2019,30/10/2019,,,,,189,226,218,258,44,52,51,60,,,"CCGT D1_Integrated Programme Schedule;M&E;Construction;M&E Construction;Compressed Air;Compressed Air (SC)"
1.3.1.1.12.1.3-1,00SCA20,"Install Large Bore Pipe/Valves/Supports",7112,"CCGTD1_IPS",TT_Task,"58409",-,-,-,100,TK_Complete,01/04/2019,03/04/2019,10/05/2019,17/08/2019,"SI---P4I40 FS,00SCA10 SS,SI1--P4A40 FS,SI1--P4H40 FS","SI---P4I40,00SCA10,SI1--P4A40,SI1--P4H40","00SCA50 FS,00SCA30 FS,00SCA40 SS,00SCA80 FS","00SCA50,00SCA30,00SCA40,00SCA80",191,228,197,248,44,53,46,57,50,,"CCGT D1_Integrated Programme Schedule;M&E;Construction;M&E Construction;Compressed Air;Compressed Air (SC);(00SCA) Comprerssed Air Station",4,4,0.0000028569,0.0032553408,0.0018311292,39,0.0,0.0001267374,0.0273972603,0.0123076923,0.0043125,0.0083550914,0.0057915058,0.0874439462,0.0,0.0186430187
1.3.1.1.12.1.3-2,00SCA50,"EC+I",7112,"CCGTD1_IPS",TT_Task,"58409",-,-,-,100,TK_Complete,05/06/2019,17/05/2019,28/06/2019,26/09/2019,"SI-BZK4-25 FS,SI-BZK4-58 FS,SI-C-4C40 FS,SI-C--4B40 FS,00SCA20 FS,EDS.1090 FS,SI-CP-4-40 FS","SI-BZK4-25,SI-BZK4-58,SI-C-4C40,SI-C--4B40,00SCA20,EDS.1090,SI-CP-4-40","00SCA90 FF","00SCA90",201,235,204,253,46,54,47,59,61,,"CCGT D1_Integrated Programme Schedule;M&E;Construction;M&E Construction;Compressed Air;Compressed Air (SC);(00SCA) Comprerssed Air Station",7,1,0.0000011179,0.002034588,0.0032553408,23,0.0,0.0001221216,0.0479452055,0.0030769231,0.0016875,0.0052219321,0.0102960103,0.0515695067,0.0,0.0167516891
1.3.1.1.12.1.3-3,00SCA70,"Hydro Test",7112,"CCGTD1_IPS",TT_Task,"58409",-,-,-,100,TK_Complete,30/09/2019,05/10/2019,03/10/2019,09/10/2019,"00SCA60 FS","00SCA60","00SCA90 FS","00SCA90",217,255,218,255,50,59,50,59,78,,"CCGT D1_Integrated Programme Schedule;M&E;Construction;M&E Construction;Compressed Air;Compressed Air (SC);(00SCA) Comprerssed Air Station",1,1,0.0000012421,0.002034588,0.0026449644,3,1.0,0.0003050565,0.0068493151,0.0030769231,0.001875,0.0052219321,0.0083655084,0.0067264574,1.0,0.091708893
1.3.1.1.12.1.3-4,00SCA80,"Painting/Insulation",7112,"CCGTD1_IPS",TT_Task,"58409",-,-,-,100,TK_Complete,24/06/2019,03/06/2019,03/07/2019,19/10/2019,"00SCA20 FS","00SCA20","00SCA90 FF","00SCA90",203,237,205,257,47,55,47,60,64,,"CCGT D1_Integrated Programme Schedule;M&E;Construction;M&E Construction;Compressed Air;Compressed Air (SC);(00SCA) Comprerssed Air Station",1,1,0.0000005383,0.002034588,0.002034588,9,0.0,0.0000919081,0.0068493151,0.0030769231,0.0008125,0.0052219321,0.0064350064,0.0201793722,0.0,0.0043717392
1.3.1.1.12.1.3-5,00SCA10,"Install Equipment/Skids/Pumps",7112,"CCGTD1_IPS",TT_Task,"58409",-,-,-,100,TK_Complete,15/03/2019,15/03/2019,17/04/2019,22/06/2019,"KD_E03 FS,KD_D06 FS,KD_E04 FS,KD_E05 FS,A1010 FS","KD_E03,KD_D06,KD_E04,KD_E05,A1010","00BAW-02-40 FF,00SCA20 SS","00BAW-02-40,00SCA20",189,226,194,240,44,52,45,56,48,,"CCGT D1_Integrated Programme Schedule;M&E;Construction;M&E Construction;Compressed Air;Compressed Air (SC);(00SCA) Comprerssed Air Station",5,2,0.0000019322,0.0046795524,0.001017294,33,0.0,0.0000929824,0.0342465753,0.0061538462,0.0029166667,0.0120104439,0.0032175032,0.0739910314,0.0,0.004811964
1.3.1.1.12.1.3-6,00SCA30,"Install Small Bore Pipe/Valves/Supports",7112,"CCGTD1_IPS",TT_Task,"58409",-,-,-,100,TK_Complete,13/04/2019,13/04/2019,23/05/2019,17/08/2019,"00SCA20 FS","00SCA20","00SCA40 FF","00SCA40",193,230,199,248,45,53,46,57,54,,"CCGT D1_Integrated Programme Schedule;M&E;Construction;M&E Construction;Compressed Air;Compressed Air (SC);(00SCA) Comprerssed Air Station",1,1,0.0,0.0026449644,0.002034588,40,0.0,0.000128658,0.0068493151,0.0030769231,0.0,0.0067885117,0.0064350064,0.0896860987,0.0,0.0194299518
1.3.1.1.12.1.3-7,00SCA40,"NDE",7112,"CCGTD1_IPS",TT_Task,"58409",-,-,-,100,TK_Complete,29/05/2019,07/05/2019,17/06/2019,28/09/2019,"00SCA30 FF,00SCA20 SS","00SCA30,00SCA20","00SCA60 FS","00SCA60",200,233,202,254,46,54,47,59,60,,"CCGT D1_Integrated Programme Schedule;M&E;Construction;M&E Construction;Compressed Air;Compressed Air (SC);(00SCA) Comprerssed Air Station",2,1,0.0000013249,0.0024415056,0.0022380468,19,0.0,0.000213289,0.0136986301,0.0030769231,0.002,0.0062663185,0.0070785071,0.0426008969,0.0,0.0541073454
1.3.1.1.12.1.3-8,00SCA60,"Line Inspection",7112,"CCGTD1_IPS",TT_Task,"58409",-,-,-,100,TK_Complete,01/08/2019,28/08/2019,05/08/2019,21/09/2019,"00SCA40 FS","00SCA40","00SCA70 FS","00SCA70",209,249,209,253,48,58,48,59,67,,"CCGT D1_Integrated Programme Schedule;M&E;Construction;M&E Construction;Compressed Air;Compressed Air (SC);(00SCA) Comprerssed Air Station",1,1,0.0000013249,0.0022380468,0.0024415056,4,0.0,0.0002628223,0.0068493151,0.0030769231,0.002,0.0057441253,0.0077220077,0.0089686099,0.0,0.0744035143
1.3.1.1.12.1.3-9,00SCA90,"Pre-Commissioning/Flushing/Cleaning",7112,"CCGTD1_IPS",TT_Task,"58409",-,-,-,100,TK_Complete,04/10/2019,12/10/2019,08/10/2019,30/10/2019,"00SCA50 FF,00SCA80 FF,00SCA70 FS","00SCA50,00SCA80,00SCA70","TOP1460 FS","TOP1460",218,256,218,258,50,59,51,60,78,,"CCGT D1_Integrated Programme Schedule;M&E;Construction;M&E Construction;Compressed Air;Compressed Air (SC);(00SCA) Comprerssed Air Station",3,1,0.0000032295,0.0018311292,0.0044760936,4,0.0,0.0005232581,0.0205479452,0.0030769231,0.004875,0.0046997389,0.0141570142,0.0089686099,0.0,0.1811165951
1.3.1.1.13,58396,"Cooling Water",7112,"CCGTD1_IPS",WBS,"58325",,,,100,Complete,19/02/2019,18/10/2018,08/04/2020,17/12/2019,,,,,185,204,245,265,43,47,57,61,,,"CCGT D1_Integrated Programme Schedule;M&E;Construction;M&E Construction"
1.3.1.1.13.1,58397,"Cooling Water",7112,"CCGTD1_IPS",WBS,"58396",,,,100,Complete,19/02/2019,18/10/2018,08/04/2020,17/12/2019,,,,,185,204,245,265,43,47,57,61,,,"CCGT D1_Integrated Programme Schedule;M&E;Construction;M&E Construction;Cooling Water"
1.3.1.1.13.1.1,58406,"(00PUR) Cathodic Protection System for Cooling Water Inlet",7112,"CCGTD1_IPS",WBS,"58397",,,,100,Complete,02/09/2019,18/09/2019,08/11/2019,08/11/2019,,,,,213,252,223,260,49,58,52,60,,,"CCGT D1_Integrated Programme Schedule;M&E;Construction;M&E Construction;Cooling Water;Cooling Water"
1.3.1.1.13.1.1-1,00UPR10,"Anode Installation",7112,"CCGTD1_IPS",TT_Task,"58406",-,-,-,100,TK_Complete,02/09/2019,20/09/2019,10/09/2019,05/10/2019,"EDS.1030 FS,SUB-BOP-160 FS,KD_D06 FS,KD_E03 FS,KD_E04 FS,KD_E05 FS,A1010 FS,KD_F07 FS","EDS.1030,SUB-BOP-160,KD_D06,KD_E03,KD_E04,KD_E05,A1010,KD_F07","00UPR20 FS","00UPR20",213,253,214,255,49,59,50,59,74,,"CCGT D1_Integrated Programme Schedule;M&E;Construction;M&E Construction;Cooling Water;Cooling Water;(00PUR) Cathodic Protection System for Cooling Water Inlet",8,1,0.0000146156,0.0032553408,0.0118006104,8,0.4,0.0001341805,0.0547945205,0.0030769231,0.0220625,0.0083550914,0.0373230373,0.0179372197,0.4,0.0216927769
1.3.1.1.13.1.1-2,00UPR20,"Rectifier Installation",7112,"CCGTD1_IPS",TT_Task,"58406",-,-,-,100,TK_Complete,11/09/2019,19/09/2019,21/09/2019,11/10/2019,"00UPR10 FS","00UPR10","00UPR30 FS","00UPR30",215,252,216,256,50,59,50,59,76,,"CCGT D1_Integrated Programme Schedule;M&E;Construction;M&E Construction;Cooling Water;Cooling Water;(00PUR) Cathodic Protection System for Cooling Water Inlet",1,1,0.0000128352,0.003051882,0.0120040692,10,0.0,0.000195453,0.0068493151,0.0030769231,0.019375,0.0078328982,0.037966538,0.0224215247,0.0,0.0467990839
1.3.1.1.13.1.1-3,00UPR30,"Junction Box Installion",7112,"CCGTD1_IPS",TT_Task,"58406",-,-,-,100,TK_Complete,23/09/2019,19/09/2019,02/10/2019,05/10/2019,"00UPR20 FS","00UPR20","00UPR40 FS","00UPR40",216,252,218,255,50,59,50,59,77,,"CCGT D1_Integrated Programme Schedule;M&E;Construction;M&E Construction;Cooling Water;Cooling Water;(00PUR) Cathodic Protection System for Cooling Water Inlet",1,1,0.000010972,0.0028484232,0.012207528,9,0.4,0.000247634,0.0068493151,0.0030769231,0.0165625,0.007310705,0.0386100386,0.0201793722,0.4,0.0681801407
1.3.1.1.13.1.1-4,00UPR40,"Test Station",7112,"CCGTD1_IPS",TT_Task,"58406",-,-,-,100,TK_Complete,03/10/2019,21/09/2019,12/10/2019,30/10/2019,"00UPR30 FS","00UPR30","00UPR50 FS","00UPR50",218,253,219,258,50,59,51,60,78,,"CCGT D1_Integrated Programme Schedule;M&E;Construction;M&E Construction;Cooling Water;Cooling Water;(00PUR) Cathodic Protection System for Cooling Water Inlet",1,1,0.0000090261,0.0026449644,0.0124109868,9,0.0,0.0002921145,0.0068493151,0.0030769231,0.013625,0.0067885117,0.0392535393,0.0201793722,0.0,0.086405947
1.3.1.1.13.1.1-5,00UPR50,"Cable Pulling/Termination",7112,"CCGTD1_IPS",TT_Task,"58406",-,-,-,100,TK_Complete,14/10/2019,18/09/2019,22/10/2019,30/10/2019,"00UPR40 FS","00UPR40","00UPR60 FS","00UPR60",219,252,220,258,51,58,51,60,79,,"CCGT D1_Integrated Programme Schedule;M&E;Construction;M&E Construction;Cooling Water;Cooling Water;(00PUR) Cathodic Protection System for Cooling Water Inlet",1,1,0.0000069973,0.0024415056,0.0126144456,8,0.0,0.0003300438,0.0068493151,0.0030769231,0.0105625,0.0062663185,0.0398970399,0.0179372197,0.0,0.1019474251
1.3.1.1.13.1.1-6,00UPR60,"Precommissioning",7112,"CCGTD1_IPS",TT_Task,"58406",-,-,-,100,TK_Complete,30/10/2019,30/10/2019,08/11/2019,08/11/2019,"00UPR50 FS","00UPR50","TOP2140 FS","TOP2140",222,258,223,260,51,60,52,60,80,,"CCGT D1_Integrated Programme Schedule;M&E;Construction;M&E Construction;Cooling Water;Cooling Water;(00PUR) Cathodic Protection System for Cooling Water Inlet",1,1,0.0000048857,0.0022380468,0.0128179044,9,1.0,0.0003623419,0.0068493151,0.0030769231,0.007375,0.0057441253,0.0405405405,0.0201793722,1.0,0.1151814808
1.3.1.1.13.1.2,58405,"(10PUR) Cathodic Protection System for Cooling Water Side of Condenser",7112,"CCGTD1_IPS",WBS,"58397",,,,100,Complete,02/09/2019,19/09/2019,09/11/2019,09/11/2019,,,,,213,252,223,260,49,59,52,60,,,"CCGT D1_Integrated Programme Schedule;M&E;Construction;M&E Construction;Cooling Water;Cooling Water"
1.3.1.1.13.1.2-1,10PUR10,"Anode Installation",7112,"CCGTD1_IPS",TT_Task,"58405",-,-,-,100,TK_Complete,02/09/2019,19/09/2019,11/09/2019,04/10/2019,"EDS.1030 FS,SUB-BOP-160 FS,KD_D06 FS,KD_E03 FS,KD_E05 FS,A1010 FS,A2590 SS","EDS.1030,SUB-BOP-160,KD_D06,KD_E03,KD_E05,A1010,A2590","10PUR20 FS","10PUR20",213,252,215,255,49,59,50,59,74,,"CCGT D1_Integrated Programme Schedule;M&E;Construction;M&E Construction;Cooling Water;Cooling Water;(10PUR) Cathodic Protection System for Cooling Water Side of Condenser",7,1,0.000040286,0.0034587996,0.0246185148,9,0.4,0.0003202293,0.0479452055,0.0030769231,0.0608125,0.0088772846,0.0778635779,0.0201793722,0.4,0.0979259371
1.3.1.1.13.1.2-2,10PUR20,"Rectifier Installation",7112,"CCGTD1_IPS",TT_Task,"58405",-,-,-,100,TK_Complete,07/09/2019,21/09/2019,18/09/2019,10/10/2019,"10PUR10 FS","10PUR10","10PUR30 FS","10PUR30",214,253,216,255,50,59,50,59,76,,"CCGT D1_Integrated Programme Schedule;M&E;Construction;M&E Construction;Cooling Water;Cooling Water;(10PUR) Cathodic Protection System for Cooling Water Side of Condenser",1,1,0.0000359386,0.0032553408,0.0248219736,11,0.4,0.0003531398,0.0068493151,0.0030769231,0.05425,0.0083550914,0.0785070785,0.0246636771,0.4,0.1114109651
1.3.1.1.13.1.2-3,10PUR30,"Junction Box Installion",7112,"CCGTD1_IPS",TT_Task,"58405",-,-,-,100,TK_Complete,13/09/2019,21/09/2019,24/09/2019,05/10/2019,"10PUR20 FS","10PUR20","10PUR40 FS","10PUR40",215,253,216,255,50,59,50,59,76,,"CCGT D1_Integrated Programme Schedule;M&E;Construction;M&E Construction;Cooling Water;Cooling Water;(10PUR) Cathodic Protection System for Cooling Water Side of Condenser",1,1,0.0000315084,0.003051882,0.0250254323,11,1.0,0.0003812377,0.0068493151,0.0030769231,0.0475625,0.0078328982,0.0791505792,0.0246636771,1.0,0.122923995
1.3.1.1.13.1.2-4,10PUR40,"Test Station",7112,"CCGTD1_IPS",TT_Task,"58405",-,-,-,100,TK_Complete,20/09/2019,20/09/2019,30/09/2019,30/10/2019,"10PUR30 FS","10PUR30","10PUR50 FS","10PUR50",216,253,217,258,50,59,50,60,77,,"CCGT D1_Integrated Programme Schedule;M&E;Construction;M&E Construction;Cooling Water;Cooling Water;(10PUR) Cathodic Protection System for Cooling Water Side of Condenser",1,1,0.0000269953,0.0028484232,0.0252288911,10,0.0,0.0004052377,0.0068493151,0.0030769231,0.04075,0.007310705,0.0797940798,0.0224215247,0.0,0.132757974
1.3.1.1.13.1.2-5,10PUR50,"Cable Pulling/Termination",7112,"CCGTD1_IPS",TT_Task,"58405",-,-,-,100,TK_Complete,02/10/2019,20/09/2019,12/10/2019,30/10/2019,"10PUR40 FS","10PUR40","10PUR60 FS","10PUR60",218,253,219,258,50,59,51,60,78,,"CCGT D1_Integrated Programme Schedule;M&E;Construction;M&E Construction;Cooling Water;Cooling Water;(10PUR) Cathodic Protection System for Cooling Water Side of Condenser",1,1,0.0000223995,0.0026449644,0.0254323499,10,0.0,0.0004257229,0.0068493151,0.0030769231,0.0338125,0.0067885117,0.0804375804,0.0224215247,0.0,0.1411517504
1.3.1.1.13.1.2-6,10PUR60,"Precommissioning",7112,"CCGTD1_IPS",TT_Task,"58405",-,-,-,100,TK_Complete,30/10/2019,30/10/2019,09/11/2019,09/11/2019,"10PUR50 FS","10PUR50","TOP2160 FS,TOP2720 FS,TOP2730 FS","TOP2160,TOP2720,TOP2730",222,258,223,260,51,60,52,60,80,,"CCGT D1_Integrated Programme Schedule;M&E;Construction;M&E Construction;Cooling Water;Cooling Water;(10PUR) Cathodic Protection System for Cooling Water Side of Condenser",1,3,0.0000177209,0.0024415056,0.0256358087,10,1.0,0.000443312,0.0068493151,0.0092307692,0.02675,0.0062663185,0.0810810811,0.0224215247,1.0,0.1483588575
1.3.1.1.13.1.3,58404,"(00PUN) Biocide Dosing System for Cooling Water",7112,"CCGTD1_IPS",WBS,"58397",,,,100,Complete,22/05/2019,23/04/2019,20/11/2019,30/11/2019,,,,,199,231,225,263,46,54,52,61,,,"CCGT D1_Integrated Programme Schedule;M&E;Construction;M&E Construction;Cooling Water;Cooling Water"
1.3.1.1.13.1.3-1,00PUN90,"NDE",7112,"CCGTD1_IPS",TT_Task,"58404",-,-,-,100,TK_Complete,16/07/2019,16/07/2019,29/07/2019,03/10/2019,"00PUN20 SS,SI1--P4H40 FF,00PUN20 FF,SI1--P4A40 FF","00PUN20,SI1--P4H40,00PUN20,SI1--P4A40","00PUN50 FS","00PUN50",206,243,208,254,48,56,48,59,66,,"CCGT D1_Integrated Programme Schedule;M&E;Construction;M&E Construction;Cooling Water;Cooling Water;(00PUN) Biocide Dosing System for Cooling Water",3,1,0.0000027741,0.0026449644,0.0126144456,13,0.0,0.0001546037,0.0205479452,0.0030769231,0.0041875,0.0067885117,0.0398970399,0.0291479821,0.0,0.0300611675
1.3.1.1.13.1.3-2,00PUN11,"Install Containers - Skid",7112,"CCGTD1_IPS",TT_Task,"58404",-,-,-,100,TK_Complete,08/06/2019,27/06/2019,13/06/2019,21/09/2019,"00PUN10 FS","00PUN10","00PUN12 FS","00PUN12",201,240,202,253,47,56,47,59,62,,"CCGT D1_Integrated Programme Schedule;M&E;Construction;M&E Construction;Cooling Water;Cooling Water;(00PUN) Biocide Dosing System for Cooling Water",1,1,0.0000047614,0.0028484232,0.0118006104,5,0.0,0.0000920556,0.0068493151,0.0030769231,0.0071875,0.007310705,0.0373230373,0.0112107623,0.0,0.0044322033
1.3.1.1.13.1.3-3,00PUN12,"Install Interconnection Lines to Process",7112,"CCGTD1_IPS",TT_Task,"58404",-,-,-,100,TK_Complete,02/08/2019,17/08/2019,07/08/2019,30/11/2019,"00PUN11 FS","00PUN11","00PUN50 FS","00PUN50",209,248,210,263,48,57,49,61,68,,"CCGT D1_Integrated Programme Schedule;M&E;Construction;M&E Construction;Cooling Water;Cooling Water;(00PUN) Biocide Dosing System for Cooling Water",1,1,0.0000028983,0.0026449644,0.0120040692,5,0.0,0.0001596035,0.0068493151,0.0030769231,0.004375,0.0067885117,0.037966538,0.0112107623,0.0,0.0321098019
1.3.1.1.13.1.3-4,00PUN10,"Install Equipment/Skids/Pumps - Skid",7112,"CCGTD1_IPS",TT_Task,"58404",-,-,-,100,TK_Complete,22/05/2019,23/04/2019,01/06/2019,10/09/2019,"SUB-BOP-160 FS,KD_D06 FS,KD_E03 FS,KD_E04 FS,KD_E05 FS,A1010 FS,KD_F07 FS","SUB-BOP-160,KD_D06,KD_E03,KD_E04,KD_E05,A1010,KD_F07","00PUN20 FS,00PUN11 FS,00PUN40 FS","00PUN20,00PUN11,00PUN40",199,231,200,251,46,54,46,58,59,,"CCGT D1_Integrated Programme Schedule;M&E;Construction;M&E Construction;Cooling Water;Cooling Water;(00PUN) Biocide Dosing System for Cooling Water",7,3,0.0000213472,0.0036622584,0.0115971516,10,0.0,0.0001067353,0.0479452055,0.0092307692,0.0322239583,0.0093994778,0.0366795367,0.0224215247,0.0,0.0104471727
1.3.1.1.13.1.3-5,00PUN40,"EC+I",7112,"CCGTD1_IPS",TT_Task,"58404",-,-,-,100,TK_Complete,20/08/2019,17/08/2019,29/08/2019,30/11/2019,"EDS.1090 FS,SI-CP-4-40 FS,SI-BZK4-25 FS,SI-C-4C40 FS,SI-C--4B40 FS,00PUN10 FS,SI-BZK4-58 FS,SI1--P4H40 FS,00PUN20 FS,SI1--P4A40 FS","EDS.1090,SI-CP-4-40,SI-BZK4-25,SI-C-4C40,SI-C--4B40,00PUN10,SI-BZK4-58,SI1--P4H40,00PUN20,SI1--P4A40","00PUN80 FS","00PUN80",211,248,213,263,49,57,49,61,70,,"CCGT D1_Integrated Programme Schedule;M&E;Construction;M&E Construction;Cooling Water;Cooling Water;(00PUN) Biocide Dosing System for Cooling Water",10,1,0.0000078488,0.0022380468,0.0138351984,9,0.0,0.0001568286,0.0684931507,0.0030769231,0.0118479167,0.0057441253,0.0437580438,0.0201793722,0.0,0.0309728132
1.3.1.1.13.1.3-6,00PUN20,"Install Pipe/Valves/Supports - Skid",7112,"CCGTD1_IPS",TT_Task,"58404",-,-,-,100,TK_Complete,08/06/2019,14/06/2019,06/07/2019,02/10/2019,"SI---P4I40 FS,SI1--P4A40 FS,00PUN10 FS,SI1--P4H40 FS","SI---P4I40,SI1--P4A40,00PUN10,SI1--P4H40","00PUN90 SS,00PUN90 FF,00PUN40 FS","00PUN90,00PUN90,00PUN40",201,239,205,254,47,55,47,59,62,,"CCGT D1_Integrated Programme Schedule;M&E;Construction;M&E Construction;Cooling Water;Cooling Water;(00PUN) Biocide Dosing System for Cooling Water",4,2,0.0000050182,0.003051882,0.0124109868,28,0.0,0.0001445304,0.0273972603,0.0061538462,0.007575,0.0078328982,0.0392535393,0.0627802691,0.0,0.0259336394
1.3.1.1.13.1.3-7,00PUN60,"Hydro Test/Leak Test",7112,"CCGTD1_IPS",TT_Task,"58404",-,-,-,100,TK_Complete,01/11/2019,01/11/2019,11/11/2019,11/11/2019,"00PUN50 SS","00PUN50","00PUN80 FS","00PUN80",222,259,223,260,51,60,52,60,80,,"CCGT D1_Integrated Programme Schedule;M&E;Construction;M&E Construction;Cooling Water;Cooling Water;(00PUN) Biocide Dosing System for Cooling Water",1,1,0.0000018218,0.0022380468,0.0134282808,10,1.0,0.0003781506,0.0068493151,0.0030769231,0.00275,0.0057441253,0.0424710425,0.0224215247,1.0,0.1216590805
1.3.1.1.13.1.3-8,00PUN50,"Line Inspection",7112,"CCGTD1_IPS",TT_Task,"58404",-,-,-,100,TK_Complete,30/10/2019,30/10/2019,08/11/2019,08/11/2019,"00PUN12 FS,00PUN90 FS","00PUN12,00PUN90","00PUN60 SS","00PUN60",222,258,223,260,51,60,52,60,80,,"CCGT D1_Integrated Programme Schedule;M&E;Construction;M&E Construction;Cooling Water;Cooling Water;(00PUN) Biocide Dosing System for Cooling Water",2,1,0.0000040576,0.0024415056,0.013224822,9,1.0,0.0003487147,0.0136986301,0.0030769231,0.006125,0.0062663185,0.0418275418,0.0201793722,1.0,0.1095977645
1.3.1.1.13.1.3-9,00PUN80,"Pre-Commissioning/Flushing/Cleaning",7112,"CCGTD1_IPS",TT_Task,"58404",-,-,-,100,TK_Complete,11/11/2019,11/11/2019,20/11/2019,20/11/2019,"00PUN40 FS,00PUN60 FS","00PUN40,00PUN60","SC1230 FS,SC1080 FS,SC1240 FS","SC1230,SC1080,SC1240",223,260,225,261,52,60,52,61,82,,"CCGT D1_Integrated Programme Schedule;M&E;Construction;M&E Construction;Cooling Water;Cooling Water;(00PUN) Biocide Dosing System for Cooling Water",2,3,0.0000075176,0.002034588,0.0150559512,9,1.0,0.0005368641,0.0136986301,0.0092307692,0.0113479167,0.0052219321,0.0476190476,0.0201793722,1.0,0.1866916387
1.3.1.1.13.1.4,58403,"(10PAH) Condenser Tube Cleaning System",7112,"CCGTD1_IPS",WBS,"58397",,,,100,Complete,19/02/2019,15/11/2018,08/04/2020,17/12/2019,,,,,185,208,245,265,43,48,57,61,,,"CCGT D1_Integrated Programme Schedule;M&E;Construction;M&E Construction;Cooling Water;Cooling Water"
1.3.1.1.13.1.4-1,10PAH20,"Install Large Bore Pipe/Valves/Supports",7112,"CCGTD1_IPS",TT_Task,"58403",-,-,-,100,TK_Complete,06/04/2019,06/04/2019,09/05/2019,03/09/2019,"SI1--P4A40 FS,A1820 FS,10PAH15 FS,10PAH10 FS,SI---P4I40 FS,SI-GHD4-62 FS,SI1--P4H40 FS","SI1--P4A40,A1820,10PAH15,10PAH10,SI---P4I40,SI-GHD4-62,SI1--P4H40","10PAH30 FS,10PAH50 FS","10PAH30,10PAH50",192,229,197,250,44,53,46,58,52,,"CCGT D1_Integrated Programme Schedule;M&E;Construction;M&E Construction;Cooling Water;Cooling Water;(10PAH) Condenser Tube Cleaning System",7,2,0.000036394,0.0036622584,0.0252288911,33,0.0,0.0003540713,0.0479452055,0.0061538462,0.0549375,0.0093994778,0.0797940798,0.0739910314,0.0,0.1117926203
1.3.1.1.13.1.4-2,10PAH50,"EC+I",7112,"CCGTD1_IPS",TT_Task,"58403",-,-,-,100,TK_Complete,30/05/2019,21/05/2019,29/06/2019,26/09/2019,"10PAH10 FS,EDS.1090 FS,SI-CP-4-40 FS,SI-C-4C40 FS,10PAH20 FS,SI-C--4B40 FS,SI-BZP4-25 FS,SI-BZK4-25 FS,SI-BZK4-58 FS","10PAH10,EDS.1090,SI-CP-4-40,SI-C-4C40,10PAH20,SI-C--4B40,SI-BZP4-25,SI-BZK4-25,SI-BZK4-58","10PAH90 FS","10PAH90",200,235,204,253,46,54,47,59,60,,"CCGT D1_Integrated Programme Schedule;M&E;Construction;M&E Construction;Cooling Water;Cooling Water;(10PAH) Condenser Tube Cleaning System",9,1,0.000015833,0.0024415056,0.0268565615,30,0.0,0.0003572468,0.0616438356,0.0030769231,0.0239002404,0.0062663185,0.0849420849,0.067264574,0.0,0.1130937828
1.3.1.1.13.1.4-3,10PAH10,"Install Equipment/Skids/Pumps",7112,"CCGTD1_IPS",TT_Task,"58403",-,-,-,100,TK_Complete,19/02/2019,15/11/2018,25/02/2019,20/11/2018,"SI1UPY4-40 FS,SI1PAH4-25 FS,SUB-BOP-160 FS,KD_D06 FS,KD_E03 FS,KD_E04 FS,KD_E05 FS,A1010 FS","SI1UPY4-40,SI1PAH4-25,SUB-BOP-160,KD_D06,KD_E03,KD_E04,KD_E05,A1010","10PAH50 FS,10PAH15 FS,10PAH20 FS","10PAH50,10PAH15,10PAH20",185,208,186,209,43,48,43,48,47,,"CCGT D1_Integrated Programme Schedule;M&E;Construction;M&E Construction;Cooling Water;Cooling Water;(10PAH) Condenser Tube Cleaning System",8,3,0.0000244521,0.004069176,0.0118006104,6,1.0,0.0001791611,0.0547945205,0.0092307692,0.0369109375,0.0104438642,0.0373230373,0.0134529148,1.0,0.0401235104
1.3.1.1.13.1.4-4,10PAH70,"Hydro Test",7112,"CCGTD1_IPS",TT_Task,"58403",-,-,-,100,TK_Complete,28/03/2020,04/12/2019,02/04/2020,09/12/2019,"10PAH60 FS","10PAH60","10PAH80 FS","10PAH80",243,263,244,264,56,61,56,61,89,,"CCGT D1_Integrated Programme Schedule;M&E;Construction;M&E Construction;Cooling Water;Cooling Water;(10PAH) Condenser Tube Cleaning System",1,1,0.0000067902,0.0026449644,0.0260427263,5,1.0,0.0003279578,0.0068493151,0.0030769231,0.01025,0.0067885117,0.0823680824,0.0112107623,1.0,0.1010926693
1.3.1.1.13.1.4-5,10PAH80,"Painting/Insulation",7112,"CCGTD1_IPS",TT_Task,"58403",-,-,-,100,TK_Complete,23/09/2019,23/09/2019,10/10/2019,17/12/2019,"10PAH70 FS","10PAH70","10PAH90 FF","10PAH90",216,253,219,265,50,59,51,61,77,,"CCGT D1_Integrated Programme Schedule;M&E;Construction;M&E Construction;Cooling Water;Cooling Water;(10PAH) Condenser Tube Cleaning System",1,1,0.0000019874,0.0024415056,0.0262461851,17,0.0,0.0003602184,0.0068493151,0.0030769231,0.003,0.0062663185,0.083011583,0.0381165919,0.0,0.1143113941
1.3.1.1.13.1.4-6,10PAH30,"Install Small Bore Pipe/Valves/Supports",7112,"CCGTD1_IPS",TT_Task,"58403",-,-,-,100,TK_Complete,26/04/2019,26/04/2019,14/05/2019,07/09/2019,"SI1--P4A40 FS,10PAH20 FS,SI1--P4H40 FS","SI1--P4A40,10PAH20,SI1--P4H40","10PAH40 FF","10PAH40",195,232,197,251,45,54,46,58,55,,"CCGT D1_Integrated Programme Schedule;M&E;Construction;M&E Construction;Cooling Water;Cooling Water;(10PAH) Condenser Tube Cleaning System",3,1,0.000020702,0.0032553408,0.0254323499,18,0.0,0.0001935918,0.0205479452,0.0030769231,0.03125,0.0083550914,0.0804375804,0.0403587444,0.0,0.0460364562
1.3.1.1.13.1.4-7,10PAH40,"NDE",7112,"CCGTD1_IPS",TT_Task,"58403",-,-,-,100,TK_Complete,23/05/2019,23/05/2019,05/06/2019,27/09/2019,"10PAH30 FF","10PAH30","10PAH60 FS","10PAH60",199,235,201,254,46,55,46,59,59,,"CCGT D1_Integrated Programme Schedule;M&E;Construction;M&E Construction;Cooling Water;Cooling Water;(10PAH) Condenser Tube Cleaning System",1,1,0.0000161475,0.003051882,0.0256358087,13,0.0,0.0002457334,0.0068493151,0.0030769231,0.024375,0.0078328982,0.0810810811,0.0291479821,0.0,0.0674013736
1.3.1.1.13.1.4-8,10PAH60,"Line Inspection",7112,"CCGTD1_IPS",TT_Task,"58403",-,-,-,100,TK_Complete,04/09/2019,28/09/2019,17/09/2019,05/10/2019,"10PAH40 FS","10PAH40","10PAH70 FS","10PAH70",214,254,215,255,49,59,50,59,75,,"CCGT D1_Integrated Programme Schedule;M&E;Construction;M&E Construction;Cooling Water;Cooling Water;(10PAH) Condenser Tube Cleaning System",1,1,0.0000115103,0.0028484232,0.0258392675,13,1.0,0.0002901324,0.0068493151,0.0030769231,0.017375,0.007310705,0.0817245817,0.0291479821,1.0,0.0855937748
1.3.1.1.13.1.4-9,10PAH90,"Pre-Commissioning/Flushing/Cleaning",7112,"CCGTD1_IPS",TT_Task,"58403",-,-,-,100,TK_Complete,01/04/2020,10/12/2019,08/04/2020,17/12/2019,"10PAH50 FS,10PAH80 FF","10PAH50,10PAH80","TOP2100 FS","TOP2100",244,264,245,265,56,61,57,61,90,,"CCGT D1_Integrated Programme Schedule;M&E;Construction;M&E Construction;Cooling Water;Cooling Water;(10PAH) Condenser Tube Cleaning System",2,1,0.0000131004,0.0022380468,0.0280773143,7,1.0,0.0006914866,0.0136986301,0.0030769231,0.0197752404,0.0057441253,0.0888030888,0.0156950673,1.0,0.2500479174
1.3.1.1.13.1.4-10,10PAH15,"Install Control Cabinet & Junction Box for Tube Cleaning Systen",7112,"CCGTD1_IPS",TT_Task,"58403",-,-,-,100,TK_Complete,31/05/2019,25/06/2019,03/06/2019,17/07/2019,"10PAH10 FS","10PAH10","10PAH20 FS","10PAH20",200,240,200,243,46,56,46,56,60,,"CCGT D1_Integrated Programme Schedule;M&E;Construction;M&E Construction;Cooling Water;Cooling Water;(10PAH) Condenser Tube Cleaning System",1,1,0.0,0.0038657172,0.0120040692,3,0.0,0.00008817,0.0068493151,0.0030769231,0.0,0.009921671,0.037966538,0.0067264574,0.0,0.0028400798
1.3.1.1.13.1.5,58402,"(10PCB) Service Cooling Water System Incl. 10PDB",7112,"CCGTD1_IPS",WBS,"58397",,,,100,Complete,24/07/2019,11/07/2019,15/11/2019,29/11/2019,,,,,208,242,224,263,48,56,52,61,,,"CCGT D1_Integrated Programme Schedule;M&E;Construction;M&E Construction;Cooling Water;Cooling Water"
1.3.1.1.13.1.5-1,10PCB20,"Install Large Bore Pipe/Valves/Supports",7112,"CCGTD1_IPS",TT_Task,"58402",-,-,-,100,TK_Complete,26/07/2019,12/07/2019,28/08/2019,04/09/2019,"SI1PCB4B25 FS,SI1--P4A40 FS,SI1PGB4D25 FS,10PGB1010 FS,SI1--P4H40 FS,10PAB-02-10 FS,10PCB10 FS,SI---P4I40 FS,SI-GHD4-62 FS,KD_D11 FS","SI1PCB4B25,SI1--P4A40,SI1PGB4D25,10PGB1010,SI1--P4H40,10PAB-02-10,10PCB10,SI---P4I40,SI-GHD4-62,KD_D11","10PCB30 FS,10PCB50 FS,10PCB80 FS","10PCB30,10PCB50,10PCB80",208,243,213,250,48,56,49,58,66,,"CCGT D1_Integrated Programme Schedule;M&E;Construction;M&E Construction;Cooling Water;Cooling Water;(10PCB) Service Cooling Water System Incl. 10PDB",10,3,0.0000247061,0.0036622584,0.0140386572,33,0.0,0.0003699867,0.0684931507,0.0092307692,0.0372942708,0.0093994778,0.0444015444,0.0739910314,0.0,0.1183139338
1.3.1.1.13.1.5-2,10PCB50,"EC+I",7112,"CCGTD1_IPS",TT_Task,"58402",-,-,-,100,TK_Complete,10/08/2019,15/07/2019,20/08/2019,25/09/2019,"EDS.1090 FS,SI-C-4C40 FS,SI-CP-4-40 FS,SI-BZK4-58 FS,SI-BZP4-25 FS,SI-C--4B40 FS,10PCB20 FS,SI-BZK4-25 FS","EDS.1090,SI-C-4C40,SI-CP-4-40,SI-BZK4-58,SI-BZP4-25,SI-C--4B40,10PCB20,SI-BZK4-25","10PCB90 FF","10PCB90",210,243,211,253,49,56,49,59,69,,"CCGT D1_Integrated Programme Schedule;M&E;Construction;M&E Construction;Cooling Water;Cooling Water;(10PCB) Service Cooling Water System Incl. 10PDB",8,1,0.0000049695,0.0024415056,0.0156663276,10,0.0,0.0001524925,0.0547945205,0.0030769231,0.0075014929,0.0062663185,0.0495495495,0.0224215247,0.0,0.0291961197
1.3.1.1.13.1.5-3,10PCB70,"Hydro Test",7112,"CCGTD1_IPS",TT_Task,"58402",-,-,-,100,TK_Complete,01/11/2019,25/11/2019,08/11/2019,29/11/2019,"10PCB60 FS","10PCB60","10PCB90 FS","10PCB90",222,262,223,263,51,61,52,61,80,,"CCGT D1_Integrated Programme Schedule;M&E;Construction;M&E Construction;Cooling Water;Cooling Water;(10PCB) Service Cooling Water System Incl. 10PDB",1,1,0.0000014905,0.0024415056,0.0148524924,7,1.0,0.0003636795,0.0068493151,0.0030769231,0.00225,0.0062663185,0.046975547,0.0156950673,1.0,0.1157295791
1.3.1.1.13.1.5-4,10PCB80,"Painting/Insulation",7112,"CCGTD1_IPS",TT_Task,"58402",-,-,-,100,TK_Complete,20/08/2019,24/08/2019,02/09/2019,15/11/2019,"10PCB20 FS","10PCB20","10PCB90 FF","10PCB90",211,249,213,261,49,58,49,60,70,,"CCGT D1_Integrated Programme Schedule;M&E;Construction;M&E Construction;Cooling Water;Cooling Water;(10PCB) Service Cooling Water System Incl. 10PDB",1,1,0.0000043,0.0024415056,0.014242116,13,0.0,0.0001647805,0.0068493151,0.0030769231,0.0064908854,0.0062663185,0.045045045,0.0291479821,0.0,0.0342310956
1.3.1.1.13.1.5-5,10PCB10,"Service Cooling Water Pumps Installed w/PXB00Y Module (See Activity 10PGB1010)",7112,"CCGTD1_IPS",TT_FinMile,"58402",-,-,-,100,TK_Complete,02/09/2019,04/09/2019,02/09/2019,04/09/2019,"SI1PCB4B25 FS,SI1PXB4-40 FS,10PGB1010 FS,SUB-BOP-160 FS,KD_D06 FS,KD_E03 FS,KD_E04 FS,KD_E05 FS,A1010 FS","SI1PCB4B25,SI1PXB4-40,10PGB1010,SUB-BOP-160,KD_D06,KD_E03,KD_E04,KD_E05,A1010","10PCB20 FS","10PCB20",213,250,213,250,49,58,49,58,74,,"CCGT D1_Integrated Programme Schedule;M&E;Construction;M&E Construction;Cooling Water;Cooling Water;(10PCB) Service Cooling Water System Incl. 10PDB",9,1,0.0000110433,0.0038657172,0.012207528,0,1.0,0.0000812387,0.0616438356,0.0030769231,0.0166701389,0.009921671,0.0386100386,0.0,1.0,0.0
1.3.1.1.13.1.5-6,10PCB30,"Install Small Bore Pipe/Valves/Supports",7112,"CCGTD1_IPS",TT_Task,"58402",-,-,-,100,TK_Complete,24/07/2019,11/07/2019,19/08/2019,03/09/2019,"10PCB20 FS,SI1--P4A40 FS,SI1--P4H40 FS","10PCB20,SI1--P4A40,SI1--P4H40","10PCB40 FF","10PCB40",208,242,211,250,48,56,49,58,66,,"CCGT D1_Integrated Programme Schedule;M&E;Construction;M&E Construction;Cooling Water;Cooling Water;(10PCB) Service Cooling Water System Incl. 10PDB",3,1,0.0000086948,0.003051882,0.014242116,26,0.0,0.0002496505,0.0205479452,0.0030769231,0.013125,0.0078328982,0.045045045,0.0582959641,0.0,0.0690064282
1.3.1.1.13.1.5-7,10PCB40,"NDE",7112,"CCGTD1_IPS",TT_Task,"58402",-,-,-,100,TK_Complete,06/08/2019,10/08/2019,12/08/2019,03/10/2019,"10PCB30 FF","10PCB30","10PCB60 FS","10PCB60",209,247,210,254,48,57,49,59,69,,"CCGT D1_Integrated Programme Schedule;M&E;Construction;M&E Construction;Cooling Water;Cooling Water;(10PCB) Service Cooling Water System Incl. 10PDB",1,1,0.0000063762,0.0028484232,0.0144455748,6,0.0,0.000293841,0.0068493151,0.0030769231,0.009625,0.007310705,0.0456885457,0.0134529148,0.0,0.0871133797
1.3.1.1.13.1.5-8,10PCB60,"Line Inspection",7112,"CCGTD1_IPS",TT_Task,"58402",-,-,-,100,TK_Complete,30/09/2019,10/10/2019,08/10/2019,09/11/2019,"10PCB40 FS","10PCB40","10PCB70 FS","10PCB70",217,255,218,260,50,59,51,60,78,,"CCGT D1_Integrated Programme Schedule;M&E;Construction;M&E Construction;Cooling Water;Cooling Water;(10PCB) Service Cooling Water System Incl. 10PDB",1,1,0.0000039748,0.0026449644,0.0146490336,8,0.0,0.000331531,0.0068493151,0.0030769231,0.006,0.0067885117,0.0463320463,0.0179372197,0.0,0.1025567826
1.3.1.1.13.1.5-9,10PCB90,"Pre-Commissioning/Flushing/Cleaning",7112,"CCGTD1_IPS",TT_Task,"58402",-,-,-,100,TK_Complete,09/11/2019,09/11/2019,15/11/2019,15/11/2019,"10PCB50 FF,10PCB70 FS,10PCB80 FF","10PCB50,10PCB70,10PCB80","TOP1430 FS","TOP1430",223,260,224,261,52,60,52,60,81,,"CCGT D1_Integrated Programme Schedule;M&E;Construction;M&E Construction;Cooling Water;Cooling Water;(10PCB) Service Cooling Water System Incl. 10PDB",3,1,0.000008814,0.0022380468,0.0168870804,6,1.0,0.0006610527,0.0205479452,0.0030769231,0.0133048783,0.0057441253,0.0534105534,0.0134529148,1.0,0.2375776883
1.3.1.1.13.1.6,58401,"(10PGB) CCW System",7112,"CCGTD1_IPS",WBS,"58397",,,,100,Complete,03/04/2019,18/10/2018,18/10/2019,17/10/2019,,,,,192,204,220,256,44,47,51,59,,,"CCGT D1_Integrated Programme Schedule;M&E;Construction;M&E Construction;Cooling Water;Cooling Water"
1.3.1.1.13.1.6-1,10PGB1020,"Install Large Bore Pipe/Valves/Supports",7112,"CCGTD1_IPS",TT_Task,"58401",-,-,-,100,TK_Complete,03/04/2019,18/10/2018,27/06/2019,02/09/2019,"A2380 FS,PMS14.1020 FS,10PAB-02-10 FF,10PGB1010 FS,KD_D11 FS","A2380,PMS14.1020,10PAB-02-10,10PGB1010,KD_D11","10PGB1050 FS,10PGB1030 FF,10PGB1080 FS","10PGB1050,10PGB1030,10PGB1080",192,204,204,250,44,47,47,58,52,,"CCGT D1_Integrated Programme Schedule;M&E;Construction;M&E Construction;Cooling Water;Cooling Water;(10PGB) CCW System",5,3,0.000068893,0.0067141404,0.0136317396,85,0.0,0.0003193615,0.0342465753,0.0092307692,0.1039953125,0.017232376,0.0431145431,0.1905829596,0.0,0.0975703736
1.3.1.1.13.1.6-2,10PGB1050,"EC+I",7112,"CCGTD1_IPS",TT_Task,"58401",-,-,-,100,TK_Complete,13/07/2019,06/06/2019,12/08/2019,26/09/2019,"10PGB1020 FS,SI-C-4C40 FS,SI-C--4B40 FS,EDS.1090 FS,SI-CP-4-40 FS,SI-BZP4-25 FS,SI-BZK4-25 FS,SI-BZK4-58 FS","10PGB1020,SI-C-4C40,SI-C--4B40,EDS.1090,SI-CP-4-40,SI-BZP4-25,SI-BZK4-25,SI-BZK4-58","10PGB1090 FS","10PGB1090",206,237,210,253,48,55,49,59,66,,"CCGT D1_Integrated Programme Schedule;M&E;Construction;M&E Construction;Cooling Water;Cooling Water;(10PGB) CCW System",8,1,0.0000330037,0.0054933876,0.01525941,30,0.0,0.0001899143,0.0547945205,0.0030769231,0.0498197716,0.0140992167,0.0482625483,0.067264574,0.0,0.0445296185
1.3.1.1.13.1.6-3,10PGB1070,"Hydro Test",7112,"CCGTD1_IPS",TT_Task,"58401",-,-,-,100,TK_Complete,22/08/2019,10/07/2019,30/08/2019,13/07/2019,"10PGB1060 FS","10PGB1060","10PGB1090 FS","10PGB1090",212,242,213,243,49,56,49,56,70,,"CCGT D1_Integrated Programme Schedule;M&E;Construction;M&E Construction;Cooling Water;Cooling Water;(10PGB) CCW System",1,1,0.0000033537,0.0054933876,0.0144455748,8,1.0,0.0003299543,0.0068493151,0.0030769231,0.0050625,0.0140992167,0.0456885457,0.0179372197,1.0,0.1019107366
1.3.1.1.13.1.6-4,10PGB1080,"Painting/Insulation",7112,"CCGTD1_IPS",TT_Task,"58401",-,-,-,100,TK_Complete,13/07/2019,08/06/2019,06/08/2019,17/10/2019,"10PGB1020 FS","10PGB1020","10PGB1090 FS","10PGB1090",206,238,209,256,48,55,48,59,66,,"CCGT D1_Integrated Programme Schedule;M&E;Construction;M&E Construction;Cooling Water;Cooling Water;(10PGB) CCW System",1,1,0.000026704,0.0054933876,0.0138351984,24,0.0,0.000151401,0.0068493151,0.0030769231,0.0403101562,0.0140992167,0.0437580438,0.0538116592,0.0,0.0287488762
1.3.1.1.13.1.6-5,10PGB1010,"Install Closed Cooling/Service Water Pump Module (PXB00Y)",7112,"CCGTD1_IPS",TT_Task,"58401",-,-,-,100,TK_Complete,30/04/2019,03/05/2019,06/06/2019,03/08/2019,"KD_D11 FS","KD_D11","10PCB20 FS,10PCB10 FS,10PGB1020 FS","10PCB20,10PCB10,10PGB1020",195,233,201,246,45,54,46,57,56,,"CCGT D1_Integrated Programme Schedule;M&E;Construction;M&E Construction;Cooling Water;Cooling Water;(10PGB) CCW System",1,3,0.0000000414,0.0093591048,0.0004069176,37,0.0,0.0000932519,0.0068493151,0.0092307692,0.0000625,0.0240208877,0.0012870013,0.0829596413,0.0,0.0049223822
1.3.1.1.13.1.6-6,10PGB1030,"Install Small Bore Pipe/Valves/Supports",7112,"CCGTD1_IPS",TT_Task,"58401",-,-,-,100,TK_Complete,16/04/2019,08/03/2019,25/05/2019,07/09/2019,"10PGB1020 FF","10PGB1020","10PGB1040 FS","10PGB1040",193,225,199,251,45,52,46,58,54,,"CCGT D1_Integrated Programme Schedule;M&E;Construction;M&E Construction;Cooling Water;Cooling Water;(10PGB) CCW System",1,1,0.0000084464,0.006103764,0.0138351984,39,0.0,0.0001952525,0.0068493151,0.0030769231,0.01275,0.0156657963,0.0437580438,0.0874439462,0.0,0.0467169239
1.3.1.1.13.1.6-7,10PGB1040,"NDE",7112,"CCGTD1_IPS",TT_Task,"58401",-,-,-,100,TK_Complete,15/05/2019,15/05/2019,06/07/2019,14/09/2019,"10PGB1030 FS","10PGB1030","10PGB1060 FS","10PGB1060",198,234,205,252,46,54,47,58,58,,"CCGT D1_Integrated Programme Schedule;M&E;Construction;M&E Construction;Cooling Water;Cooling Water;(10PGB) CCW System",1,1,0.0000068316,0.0059003052,0.0140386572,52,0.0,0.000247523,0.0068493151,0.0030769231,0.0103125,0.0151436031,0.0444015444,0.1165919283,0.0,0.0681346596
1.3.1.1.13.1.6-8,10PGB1060,"Line Inspection",7112,"CCGTD1_IPS",TT_Task,"58401",-,-,-,100,TK_Complete,08/08/2019,29/06/2019,16/08/2019,13/07/2019,"10PGB1040 FS","10PGB1040","10PGB1070 FS","10PGB1070",210,241,211,243,49,56,49,56,69,,"CCGT D1_Integrated Programme Schedule;M&E;Construction;M&E Construction;Cooling Water;Cooling Water;(10PGB) CCW System",1,1,0.0000051341,0.0056968464,0.014242116,8,0.8,0.0002920519,0.0068493151,0.0030769231,0.00775,0.0146214099,0.045045045,0.0179372197,0.8,0.0863802986
1.3.1.1.13.1.6-9,10PGB1090,"Pre-Commissioning/Flushing/Cleaning",7112,"CCGTD1_IPS",TT_Task,"58401",-,-,-,100,TK_Complete,11/10/2019,05/10/2019,18/10/2019,10/10/2019,"10PGB1080 FS,10PGB1050 FS,10PGB1070 FS","10PGB1080,10PGB1050,10PGB1070","TOP1420 FS","TOP1420",219,255,220,255,51,59,51,59,79,,"CCGT D1_Integrated Programme Schedule;M&E;Construction;M&E Construction;Cooling Water;Cooling Water;(10PGB) CCW System",3,1,0.0000630614,0.0052899288,0.0164801628,7,1.0,0.0006528548,0.0205479452,0.0030769231,0.0951924279,0.0135770235,0.0521235521,0.0156950673,1.0,0.234218605
1.3.1.1.13.1.7,58400,"(10PAB-01) Circulating Water System incl. Cooling Water Pumps",7112,"CCGTD1_IPS",WBS,"58397",,,,100,Complete,31/05/2019,29/06/2019,08/04/2020,12/12/2019,,,,,200,241,245,264,46,56,57,61,,,"CCGT D1_Integrated Programme Schedule;M&E;Construction;M&E Construction;Cooling Water;Cooling Water"
1.3.1.1.13.1.7-1,10PAB-01-20,"Install Large Bore Pipe/Valves/Supports from CW Pumps to U/G Piping Terminal Point",7112,"CCGTD1_IPS",TT_Task,"58400",-,-,-,100,TK_Complete,11/07/2019,13/07/2019,05/08/2019,25/10/2019,"SI1--P4H40 FS,10PAB-01-10 FS,SI1--P4A40 FS,SI---P4I40 FS","SI1--P4H40,10PAB-01-10,SI1--P4A40,SI---P4I40","10PAB-01-30 SS,10PAB-01-40 SS","10PAB-01-30,10PAB-01-40",206,243,209,258,48,56,48,60,66,,"CCGT D1_Integrated Programme Schedule;M&E;Construction;M&E Construction;Cooling Water;Cooling Water;(10PAB-01) Circulating Water System incl. Cooling Water Pumps",4,2,0.0000020702,0.0036622584,0.0022380468,25,0.0,0.0002363125,0.0273972603,0.0061538462,0.003125,0.0093994778,0.0070785071,0.0560538117,0.0,0.0635411985
1.3.1.1.13.1.7-2,10PAB-01-50,"EC+I",7112,"CCGTD1_IPS",TT_Task,"58400",-,-,-,100,TK_Complete,02/09/2019,02/09/2019,03/10/2019,23/11/2019,"SI-BZK4-25 FS,SI-CP-4-40 FS,SI-C-4C40 FS,EDS.1090 FS,SI-C--4B40 FS,SI-BZK4-58 FS,SI-BZP4-25 FS,10PAB-01-10 FS","SI-BZK4-25,SI-CP-4-40,SI-C-4C40,EDS.1090,SI-C--4B40,SI-BZK4-58,SI-BZP4-25,10PAB-01-10","10PAB-01-90 FS","10PAB-01-90",213,250,218,262,49,58,50,61,74,,"CCGT D1_Integrated Programme Schedule;M&E;Construction;M&E Construction;Cooling Water;Cooling Water;(10PAB-01) Circulating Water System incl. Cooling Water Pumps",8,1,0.0000037455,0.0026449644,0.003051882,31,0.0,0.0002921939,0.0547945205,0.0030769231,0.0056538366,0.0067885117,0.0096525097,0.0695067265,0.0,0.0864384773
1.3.1.1.13.1.7-3,10PAB-01-10,"Install Circulating Water Pumps",7112,"CCGTD1_IPS",TT_Task,"58400",-,-,-,100,TK_Complete,08/07/2019,06/07/2019,22/07/2019,14/09/2019,"SI1PAA4-25 FS,SI1PAC4B40 FS,SI1PAC4E40 FS,10PAB-01-110 FS","SI1PAA4-25,SI1PAC4B40,SI1PAC4E40,10PAB-01-110","10PAB-01-20 FS,10PAB-01-50 FS","10PAB-01-20,10PAB-01-50",205,242,207,252,48,56,48,58,65,,"CCGT D1_Integrated Programme Schedule;M&E;Construction;M&E Construction;Cooling Water;Cooling Water;(10PAB-01) Circulating Water System incl. Cooling Water Pumps",4,2,0.0000042249,0.004069176,0.0014242116,14,0.0,0.0004017449,0.0273972603,0.0061538462,0.0063776042,0.0104438642,0.0045045045,0.0313901345,0.0,0.1313268071
1.3.1.1.13.1.7-4,10PAB-01-70,"Hydro Test",7112,"CCGTD1_IPS",TT_Task,"58400",-,-,-,100,TK_Complete,30/03/2020,02/12/2019,02/04/2020,06/12/2019,"10PAB-01-60 FS","10PAB-01-60","10PAB-01-80 FS,10PAB-01-90 FS","10PAB-01-80,10PAB-01-90",243,263,244,264,56,61,56,61,90,,"CCGT D1_Integrated Programme Schedule;M&E;Construction;M&E Construction;Cooling Water;Cooling Water;(10PAB-01) Circulating Water System incl. Cooling Water Pumps",1,2,0.0000030225,0.0028484232,0.003051882,3,1.0,0.0003916026,0.0068493151,0.0061538462,0.0045625,0.007310705,0.0096525097,0.0067264574,1.0,0.1271710304
1.3.1.1.13.1.7-5,10PAB-01-80,"Painting/Insulation",7112,"CCGTD1_IPS",TT_Task,"58400",-,-,-,100,TK_Complete,26/09/2019,26/09/2019,05/10/2019,12/12/2019,"10PAB-01-70 FS","10PAB-01-70","10PAB-01-90 FF","10PAB-01-90",217,253,218,264,50,59,50,61,77,,"CCGT D1_Integrated Programme Schedule;M&E;Construction;M&E Construction;Cooling Water;Cooling Water;(10PAB-01) Circulating Water System incl. Cooling Water Pumps",1,1,0.0,0.0026449644,0.0032553408,9,0.0,0.0002956447,0.0068493151,0.0030769231,0.0,0.0067885117,0.0102960103,0.0201793722,0.0,0.0878524534
1.3.1.1.13.1.7-6,10PAB-01-30,"Install Small Bore Pipe/Valves/Supports from CW Pump to U/G Piping Terminal Point",7112,"CCGTD1_IPS",TT_Task,"58400",-,-,-,100,TK_Complete,15/07/2019,13/07/2019,07/08/2019,25/10/2019,"SI1--P4H40 FS,10PAB-01-20 SS,SI1--P4A40 FS","SI1--P4H40,10PAB-01-20,SI1--P4A40","10PAB-01-40 FF","10PAB-01-40",206,243,210,258,48,56,49,60,66,,"CCGT D1_Integrated Programme Schedule;M&E;Construction;M&E Construction;Cooling Water;Cooling Water;(10PAB-01) Circulating Water System incl. Cooling Water Pumps",3,1,0.0000003312,0.0034587996,0.0024415056,23,0.0,0.0002185518,0.0205479452,0.0030769231,0.0005,0.0088772846,0.0077220077,0.0515695067,0.0,0.0562637826
1.3.1.1.13.1.7-7,10PAB-01-40,"NDE",7112,"CCGTD1_IPS",TT_Task,"58400",-,-,-,100,TK_Complete,09/08/2019,24/08/2019,20/08/2019,25/10/2019,"10PAB-01-30 FF,10PAB-01-20 SS","10PAB-01-30,10PAB-01-20","10PAB-01-60 FS","10PAB-01-60",210,249,211,258,49,58,49,60,69,,"CCGT D1_Integrated Programme Schedule;M&E;Construction;M&E Construction;Cooling Water;Cooling Water;(10PAB-01) Circulating Water System incl. Cooling Water Pumps",2,1,0.0000029397,0.0032553408,0.0026449644,11,0.0,0.0003324944,0.0136986301,0.0030769231,0.0044375,0.0083550914,0.0083655084,0.0246636771,0.0,0.1029515326
1.3.1.1.13.1.7-8,10PAB-01-60,"Line Inspection",7112,"CCGTD1_IPS",TT_Task,"58400",-,-,-,100,TK_Complete,30/11/2019,30/11/2019,04/12/2019,01/12/2019,"10PAB-01-40 FS","10PAB-01-40","10PAB-01-70 FS","10PAB-01-70",226,263,227,263,52,61,52,61,84,,"CCGT D1_Integrated Programme Schedule;M&E;Construction;M&E Construction;Cooling Water;Cooling Water;(10PAB-01) Circulating Water System incl. Cooling Water Pumps",1,1,0.0000030225,0.003051882,0.0028484232,4,1.0,0.0003644495,0.0068493151,0.0030769231,0.0045625,0.0078328982,0.009009009,0.0089686099,1.0,0.1160450947
1.3.1.1.13.1.7-9,10PAB-01-90,"Pre-Commissioning/Flushing/Cleaning",7112,"CCGTD1_IPS",TT_Task,"58400",-,-,-,100,TK_Complete,03/04/2020,07/12/2019,08/04/2020,12/12/2019,"10PAB-01-50 FS,10PAB-01-80 FF,10PAB-01-70 FS","10PAB-01-50,10PAB-01-80,10PAB-01-70","TOP2120 FS","TOP2120",244,264,245,264,57,61,57,61,90,,"CCGT D1_Integrated Programme Schedule;M&E;Construction;M&E Construction;Cooling Water;Cooling Water;(10PAB-01) Circulating Water System incl. Cooling Water Pumps",3,1,0.0000067265,0.0024415056,0.00508647,5,1.0,0.0007011469,0.0205479452,0.0030769231,0.0101538366,0.0062663185,0.0160875161,0.0112107623,1.0,0.2540062202
1.3.1.1.13.1.7-10,10PAB-01-110,"Prepare Circulating Water Pumps Foundations",7112,"CCGTD1_IPS",TT_Task,"58400",-,-,-,100,TK_Complete,31/05/2019,29/06/2019,14/06/2019,19/07/2019,"KD_F07 FS,KD_C06 FS","KD_F07,KD_C06","10PAB-01-10 FS","10PAB-01-10",200,241,202,244,46,56,47,56,60,,"CCGT D1_Integrated Programme Schedule;M&E;Construction;M&E Construction;Cooling Water;Cooling Water;(10PAB-01) Circulating Water System incl. Cooling Water Pumps",2,1,0.0000009954,0.0042726348,0.0006103764,14,0.4,0.0001328032,0.0136986301,0.0030769231,0.0015026042,0.0109660574,0.0019305019,0.0313901345,0.4,0.021128433
1.3.1.1.13.1.8,58399,"(10PAB-02) Circulating Water System Power Island Part",7112,"CCGTD1_IPS",WBS,"58397",,,,100,Complete,01/04/2019,01/04/2019,10/12/2019,16/12/2019,,,,,191,228,227,265,44,53,53,61,,,"CCGT D1_Integrated Programme Schedule;M&E;Construction;M&E Construction;Cooling Water;Cooling Water"
1.3.1.1.13.1.8-1,10PAB-02-20,"Install Large Bore Pipe/Valves/Supports from Civil U/G TP to  Condenser",7112,"CCGTD1_IPS",TT_Task,"58399",-,-,-,100,TK_Complete,09/05/2019,09/05/2019,06/06/2019,04/11/2019,"SI---P4I40 FS,10PAB-02-10 FS,A1800 SF","SI---P4I40,10PAB-02-10,A1800","10PAB-02-40 SS,10PAB-02-70 FS,SC1150 FS,10PAB-02-30 FF,10PAB-02-50 FS","10PAB-02-40,10PAB-02-70,SC1150,10PAB-02-30,10PAB-02-50",197,233,201,259,46,54,46,60,58,,"CCGT D1_Integrated Programme Schedule;M&E;Construction;M&E Construction;Cooling Water;Cooling Water;(10PAB-02) Circulating Water System Power Island Part",3,5,0.0000545186,0.004069176,0.0274669379,28,0.0,0.0001627801,0.0205479452,0.0153846154,0.082296875,0.0104438642,0.0868725869,0.0627802691,0.0,0.0334114452
1.3.1.1.13.1.8-2,10PAB-02-70,"Hydro Test",7112,"CCGTD1_IPS",TT_Task,"58399",-,-,-,100,TK_Complete,04/11/2019,04/11/2019,13/11/2019,23/11/2019,"10PAB-02-20 FS,10PAB-02-60 FS","10PAB-02-20,10PAB-02-60","10PAB-02-80 FS","10PAB-02-80",222,259,224,262,51,60,52,61,81,,"CCGT D1_Integrated Programme Schedule;M&E;Construction;M&E Construction;Cooling Water;Cooling Water;(10PAB-02) Circulating Water System Power Island Part",2,1,0.0000074113,0.0028484232,0.0284842319,9,0.2,0.0003059873,0.0136986301,0.0030769231,0.0111875,0.007310705,0.0900900901,0.0201793722,0.2,0.0920902864
1.3.1.1.13.1.8-3,10PAB-02-50,"EC+I",7112,"CCGTD1_IPS",TT_Task,"58399",-,-,-,100,TK_Complete,28/06/2019,13/06/2019,30/07/2019,05/11/2019,"SI-C-4C40 FS,SI-BZK4-25 FS,SI-C--4B40 FS,SI-CP-4-40 FS,SI-BZK4-58 FS,SI-BZP4-25 FS,10PAB-02-20 FS,EDS.1090 FS,10PAB-02-30 SS","SI-C-4C40,SI-BZK4-25,SI-C--4B40,SI-CP-4-40,SI-BZK4-58,SI-BZP4-25,10PAB-02-20,EDS.1090,10PAB-02-30","10PAB-02-90 FS","10PAB-02-90",204,238,208,259,47,55,48,60,65,,"CCGT D1_Integrated Programme Schedule;M&E;Construction;M&E Construction;Cooling Water;Cooling Water;(10PAB-02) Circulating Water System Power Island Part",9,1,0.0000175209,0.0026449644,0.0292980671,32,0.0,0.0002516342,0.0616438356,0.0030769231,0.0264481074,0.0067885117,0.0926640927,0.0717488789,0.0,0.0698192452
1.3.1.1.13.1.8-4,10PAB-02-80,"Painting/Insulation",7112,"CCGTD1_IPS",TT_Task,"58399",-,-,-,100,TK_Complete,15/10/2019,25/09/2019,29/10/2019,16/12/2019,"10PAB-02-70 FS","10PAB-02-70","10PAB-02-90 FS","10PAB-02-90",219,253,221,265,51,59,51,61,79,,"CCGT D1_Integrated Programme Schedule;M&E;Construction;M&E Construction;Cooling Water;Cooling Water;(10PAB-02) Circulating Water System Power Island Part",1,1,0.000002153,0.0026449644,0.0286876907,14,0.0,0.0003418044,0.0068493151,0.0030769231,0.00325,0.0067885117,0.0907335907,0.0313901345,0.0,0.1067663123
1.3.1.1.13.1.8-5,10PAB-02-10,"Install Cooling Water Piperack (UPY00Y Module)",7112,"CCGTD1_IPS",TT_Task,"58399",-,-,-,100,TK_Complete,01/04/2019,01/04/2019,15/04/2019,23/07/2019,"KD_D11 FS,KD_C06 FS,SI1UPY4-40 FS,SUB-BOP-160 FS,KD_D06 FS,KD_E03 FS,KD_E04 FS,KD_E05 FS,A1010 FS","KD_D11,KD_C06,SI1UPY4-40,SUB-BOP-160,KD_D06,KD_E03,KD_E04,KD_E05,A1010","10PCB20 FS,10PGB1020 FF,10PAB-02-20 FS","10PCB20,10PGB1020,10PAB-02-20",191,228,193,244,44,53,45,57,50,,"CCGT D1_Integrated Programme Schedule;M&E;Construction;M&E Construction;Cooling Water;Cooling Water;(10PAB-02) Circulating Water System Power Island Part",9,3,0.0000966028,0.0113936928,0.0120040692,14,0.0,0.0001874819,0.0616438356,0.0092307692,0.1458237847,0.0292428198,0.037966538,0.0313901345,0.0,0.0435329591
1.3.1.1.13.1.8-6,10PAB-02-30,"Install Small Bore Pipe/Valves/Supports  from Civil U/G TP to  Condenser",7112,"CCGTD1_IPS",TT_Task,"58399",-,-,-,100,TK_Complete,01/04/2019,09/04/2019,04/06/2019,05/10/2019,"10PAB-02-20 FF","10PAB-02-20","10PAB-02-40 FF,10PAB-02-50 SS","10PAB-02-40,10PAB-02-50",191,229,200,255,44,53,46,59,50,,"CCGT D1_Integrated Programme Schedule;M&E;Construction;M&E Construction;Cooling Water;Cooling Water;(10PAB-02) Circulating Water System Power Island Part",1,2,0.0,0.0036622584,0.0276703967,64,0.0,0.0001597165,0.0068493151,0.0061538462,0.0,0.0093994778,0.0875160875,0.1434977578,0.0,0.0321561221
1.3.1.1.13.1.8-7,10PAB-02-40,"NDE",7112,"CCGTD1_IPS",TT_Task,"58399",-,-,-,100,TK_Complete,24/06/2019,04/06/2019,02/07/2019,05/10/2019,"10PAB-02-20 SS,10PAB-02-30 FF","10PAB-02-20,10PAB-02-30","10PAB-02-60 FS","10PAB-02-60",203,237,204,255,47,55,47,59,64,,"CCGT D1_Integrated Programme Schedule;M&E;Construction;M&E Construction;Cooling Water;Cooling Water;(10PAB-02) Circulating Water System Power Island Part",2,1,0.0000029397,0.0032553408,0.0278738555,8,0.0,0.0001182449,0.0136986301,0.0030769231,0.0044375,0.0083550914,0.0881595882,0.0179372197,0.0,0.0151632051
1.3.1.1.13.1.8-8,10PAB-02-60,"Line Inspection",7112,"CCGTD1_IPS",TT_Task,"58399",-,-,-,100,TK_Complete,26/10/2019,04/10/2019,31/10/2019,22/10/2019,"SC1150 FS,10PAB-02-40 FS","SC1150,10PAB-02-40","10PAB-02-70 FS","10PAB-02-70",221,255,222,257,51,59,51,60,80,,"CCGT D1_Integrated Programme Schedule;M&E;Construction;M&E Construction;Cooling Water;Cooling Water;(10PAB-02) Circulating Water System Power Island Part",2,1,0.0000013249,0.003051882,0.0282807731,5,0.0,0.0002510667,0.0136986301,0.0030769231,0.002,0.0078328982,0.0894465894,0.0112107623,0.0,0.0695867134
1.3.1.1.13.1.8-9,10PAB-02-90,"Pre-Commissioning/Flushing/Cleaning",7112,"CCGTD1_IPS",TT_Task,"58399",-,-,-,100,TK_Complete,04/12/2019,04/12/2019,10/12/2019,16/12/2019,"10PAB-02-50 FS,10PAB-02-80 FS","10PAB-02-50,10PAB-02-80","TOP1440 FS,SC1300 FS","TOP1440,SC1300",227,263,227,265,52,61,53,61,85,,"CCGT D1_Integrated Programme Schedule;M&E;Construction;M&E Construction;Cooling Water;Cooling Water;(10PAB-02) Circulating Water System Power Island Part",2,2,0.0000145398,0.0024415056,0.0305188199,6,0.2,0.000586642,0.0136986301,0.0061538462,0.0219481074,0.0062663185,0.0965250965,0.0134529148,0.2,0.2070880533
1.3.1.1.13.1.9,58398,"(00PAA) Cooling Water Screening Plant",7112,"CCGTD1_IPS",WBS,"58397",,,,100,Complete,22/06/2019,18/05/2019,07/12/2019,10/12/2019,,,,,203,235,227,264,47,54,53,61,,,"CCGT D1_Integrated Programme Schedule;M&E;Construction;M&E Construction;Cooling Water;Cooling Water"
1.3.1.1.13.1.9-1,00PAA10,"Install Equipment - Skid",7112,"CCGTD1_IPS",TT_Task,"58398",-,-,-,100,TK_Complete,22/06/2019,18/05/2019,06/07/2019,17/10/2019,"SI1SMQ4A45 FS,SI1PBB4B45 FS,SI1PDB4-25 FS,KD_F07 FS,SI1PAA4-40 FS,SUB-BOP-160 FS,KD_D06 FS,KD_E03 FS,KD_E04 FS,KD_E05 FS,A1010 FS","SI1SMQ4A45,SI1PBB4B45,SI1PDB4-25,KD_F07,SI1PAA4-40,SUB-BOP-160,KD_D06,KD_E03,KD_E04,KD_E05,A1010","00PAA20 FF,00PAA50 FS,00PAA11 SS,00BAW-02-40 FF","00PAA20,00PAA50,00PAA11,00BAW-02-40",203,235,205,256,47,54,47,59,64,,"CCGT D1_Integrated Programme Schedule;M&E;Construction;M&E Construction;Cooling Water;Cooling Water;(00PAA) Cooling Water Screening Plant",11,4,0.0000390922,0.0052899288,0.0124109868,14,0.0,0.000393562,0.0753424658,0.0123076923,0.0590104167,0.0135770235,0.0392535393,0.0313901345,0.0,0.1279738706
1.3.1.1.13.1.9-2,00PAA50,"EC+I",7112,"CCGTD1_IPS",TT_Task,"58398",-,-,-,100,TK_Complete,02/09/2019,24/08/2019,17/09/2019,20/11/2019,"00PAA10 FS,00PAA11 FS","00PAA10,00PAA11","00PAA90 FS","00PAA90",213,249,215,261,49,58,50,61,74,,"CCGT D1_Integrated Programme Schedule;M&E;Construction;M&E Construction;Cooling Water;Cooling Water;(00PAA) Cooling Water Screening Plant",2,1,0.000006873,0.0024415056,0.0128179044,15,0.0,0.0002001945,0.0136986301,0.0030769231,0.010375,0.0062663185,0.0405405405,0.033632287,0.0,0.0487419185
1.3.1.1.13.1.9-3,00PAA11,"Installation of Bar Screen - Skid",7112,"CCGTD1_IPS",TT_Task,"58398",-,-,-,100,TK_Complete,31/07/2019,03/08/2019,22/08/2019,15/10/2019,"00PAA10 SS","00PAA10","00PAA20 SS,00PAA50 FS","00PAA20,00PAA50",209,246,212,256,48,57,49,59,67,,"CCGT D1_Integrated Programme Schedule;M&E;Construction;M&E Construction;Cooling Water;Cooling Water;(00PAA) Cooling Water Screening Plant",1,2,0.0,0.0038657172,0.0126144456,22,0.0,0.0001631122,0.0068493151,0.0061538462,0.0,0.009921671,0.0398970399,0.0493273543,0.0,0.0335475212
1.3.1.1.13.1.9-4,00PAA20,"Install Large Bore Pipe/Valves/Supports",7112,"CCGTD1_IPS",TT_Task,"58398",-,-,-,100,TK_Complete,22/07/2019,13/07/2019,09/08/2019,19/10/2019,"00PAA11 SS,00PAA10 FF","00PAA11,00PAA10","00PAA40 FS,00PAA30 FF","00PAA40,00PAA30",207,243,210,257,48,56,49,60,66,,"CCGT D1_Integrated Programme Schedule;M&E;Construction;M&E Construction;Cooling Water;Cooling Water;(00PAA) Cooling Water Screening Plant",2,2,0.0000130422,0.0034587996,0.0128179044,18,0.0,0.0002239857,0.0136986301,0.0061538462,0.0196875,0.0088772846,0.0405405405,0.0403587444,0.0,0.0584903023
1.3.1.1.13.1.9-5,00PAA70,"Hydro Test",7112,"CCGTD1_IPS",TT_Task,"58398",-,-,-,100,TK_Complete,05/11/2019,05/11/2019,08/11/2019,15/11/2019,"00PAA60 FS","00PAA60","00PAA80 FS,00PAA90 FS","00PAA80,00PAA90",222,259,223,261,52,60,52,60,81,,"CCGT D1_Integrated Programme Schedule;M&E;Construction;M&E Construction;Cooling Water;Cooling Water;(00PAA) Cooling Water Screening Plant",1,2,0.0000047614,0.0026449644,0.0136317396,3,0.2,0.0003867319,0.0068493151,0.0061538462,0.0071875,0.0067885117,0.0431145431,0.0067264574,0.2,0.1251752515
1.3.1.1.13.1.9-6,00PAA80,"Painting/Insulation",7112,"CCGTD1_IPS",TT_Task,"58398",-,-,-,100,TK_Complete,21/09/2019,28/09/2019,30/09/2019,10/12/2019,"00PAA70 FS","00PAA70","00PAA90 FF","00PAA90",216,254,217,264,50,59,50,61,77,,"CCGT D1_Integrated Programme Schedule;M&E;Construction;M&E Construction;Cooling Water;Cooling Water;(00PAA) Cooling Water Screening Plant",1,1,0.0,0.0024415056,0.0138351984,9,0.0,0.0002665355,0.0068493151,0.0030769231,0.0,0.0062663185,0.0437580438,0.0201793722,0.0,0.0759249986
1.3.1.1.13.1.9-7,00PAA30,"Install Small Bore Pipe/Valves/Supports",7112,"CCGTD1_IPS",TT_Task,"58398",-,-,-,100,TK_Complete,10/08/2019,13/07/2019,29/08/2019,23/10/2019,"00PAA20 FF","00PAA20","00PAA40 FS","00PAA40",210,243,213,257,49,56,49,60,69,,"CCGT D1_Integrated Programme Schedule;M&E;Construction;M&E Construction;Cooling Water;Cooling Water;(00PAA) Cooling Water Screening Plant",1,1,0.0,0.0032553408,0.0130213632,19,0.0,0.0001847832,0.0068493151,0.0030769231,0.0,0.0083550914,0.0411840412,0.0426008969,0.0,0.0424271726
1.3.1.1.13.1.9-8,00PAA40,"NDE",7112,"CCGTD1_IPS",TT_Task,"58398",-,-,-,100,TK_Complete,15/08/2019,24/08/2019,31/08/2019,26/10/2019,"00PAA30 FS,00PAA20 FS","00PAA30,00PAA20","00PAA60 FS","00PAA60",211,249,213,258,49,58,49,60,69,,"CCGT D1_Integrated Programme Schedule;M&E;Construction;M&E Construction;Cooling Water;Cooling Water;(00PAA) Cooling Water Screening Plant",2,1,0.0000090675,0.003051882,0.013224822,16,0.0,0.0003258037,0.0136986301,0.0030769231,0.0136875,0.0078328982,0.0418275418,0.0358744395,0.0,0.1002100249
1.3.1.1.13.1.9-9,00PAA60,"Line Inspection",7112,"CCGTD1_IPS",TT_Task,"58398",-,-,-,100,TK_Complete,30/10/2019,30/10/2019,04/11/2019,04/11/2019,"00PAA40 FS","00PAA40","00PAA70 FS","00PAA70",222,258,222,259,51,60,51,60,80,,"CCGT D1_Integrated Programme Schedule;M&E;Construction;M&E Construction;Cooling Water;Cooling Water;(00PAA) Cooling Water Screening Plant",1,1,0.0000069559,0.0028484232,0.0134282808,5,1.0,0.0003587043,0.0068493151,0.0030769231,0.0105,0.007310705,0.0424710425,0.0112107623,1.0,0.1136910146
1.3.1.1.13.1.9-10,00PAA90,"Pre-Commissioning/Flushing/Cleaning",7112,"CCGTD1_IPS",TT_Task,"58398",-,-,-,100,TK_Complete,30/11/2019,30/11/2019,07/12/2019,10/12/2019,"00PAA50 FS,00PAA80 FF,00PAA70 FS","00PAA50,00PAA80,00PAA70","TOP2130 FS","TOP2130",226,263,227,264,52,61,53,61,84,,"CCGT D1_Integrated Programme Schedule;M&E;Construction;M&E Construction;Cooling Water;Cooling Water;(00PAA) Cooling Water Screening Plant",3,1,0.0000074527,0.0022380468,0.014242116,7,0.8,0.0006230092,0.0205479452,0.0030769231,0.01125,0.0057441253,0.045045045,0.0156950673,0.8,0.221989426
1.3.1.1.14,58391,"Fuel Gas",7112,"CCGTD1_IPS",WBS,"58325",,,,100,Complete,30/08/2018,13/08/2018,11/11/2019,16/12/2019,,,,,161,195,223,265,37,45,52,61,,,"CCGT D1_Integrated Programme Schedule;M&E;Construction;M&E Construction"
1.3.1.1.14.1,58392,"Fuel Gas (EK)",7112,"CCGTD1_IPS",WBS,"58391",,,,100,Complete,30/08/2018,13/08/2018,11/11/2019,16/12/2019,,,,,161,195,223,265,37,45,52,61,,,"CCGT D1_Integrated Programme Schedule;M&E;Construction;M&E Construction;Fuel Gas"
1.3.1.1.14.1.1,58395,"(10EKT20) Fuel Gas Preheating System 10EKT20",7112,"CCGTD1_IPS",WBS,"58392",,,,100,Complete,30/04/2019,06/05/2019,23/10/2019,27/11/2019,,,,,195,233,221,262,45,54,51,61,,,"CCGT D1_Integrated Programme Schedule;M&E;Construction;M&E Construction;Fuel Gas;Fuel Gas (EK)"
1.3.1.1.14.1.1-1,10EKT20-10,"Install Equipment/Skids/Pumps",7112,"CCGTD1_IPS",TT_Task,"58395",-,-,-,100,TK_Complete,30/04/2019,08/05/2019,05/06/2019,20/07/2019,"KD_D10 FS","KD_D10","10EKT20-20 SS","10EKT20-20",195,233,201,244,45,54,46,56,56,,"CCGT D1_Integrated Programme Schedule;M&E;Construction;M&E Construction;Fuel Gas;Fuel Gas (EK);(10EKT20) Fuel Gas Preheating System 10EKT20",1,1,0.0000008695,0.0063072228,0.0004069176,36,0.0,0.0000994114,0.0068493151,0.0030769231,0.0013125,0.0161879896,0.0012870013,0.0807174888,0.0,0.0074462077
1.3.1.1.14.1.1-2,10EKT20-90,"NDE",7112,"CCGTD1_IPS",TT_Task,"58395",-,-,-,100,TK_Complete,08/05/2019,08/05/2019,13/06/2019,02/10/2019,"10EKT20-20 FF,10EKT20-30 FF","10EKT20-20,10EKT20-30","10EKT20-50 FS","10EKT20-50",197,233,202,254,45,54,47,59,58,,"CCGT D1_Integrated Programme Schedule;M&E;Construction;M&E Construction;Fuel Gas;Fuel Gas (EK);(10EKT20) Fuel Gas Preheating System 10EKT20",2,1,0.0000010765,0.0032553408,0.0012207528,36,0.0,0.000197887,0.0136986301,0.0030769231,0.001625,0.0083550914,0.0038610039,0.0807174888,0.0,0.0477964259
1.3.1.1.14.1.1-3,10EKT20-20,"Install Large Bore Pipe/Valves/Supports",7112,"CCGTD1_IPS",TT_Task,"58395",-,-,-,100,TK_Complete,30/04/2019,06/05/2019,05/06/2019,14/09/2019,"SI---P4I40 FS,10EKT20-10 SS","SI---P4I40,10EKT20-10","10EKT20-90 FF,CP1BZK7D25 FS,10EKT20-30 SS,00SGM-01-10 FS,10EKT20-40 FS,10EKT20-70 FS","10EKT20-90,CP1BZK7D25,10EKT20-30,00SGM-01-10,10EKT20-40,10EKT20-70",195,233,201,252,45,54,46,58,56,,"CCGT D1_Integrated Programme Schedule;M&E;Construction;M&E Construction;Fuel Gas;Fuel Gas (EK);(10EKT20) Fuel Gas Preheating System 10EKT20",2,6,0.0000031053,0.006103764,0.0008138352,36,0.0,0.0001675138,0.0136986301,0.0184615385,0.0046875,0.0156657963,0.0025740026,0.0807174888,0.0,0.035351043
1.3.1.1.14.1.1-4,10EKT20-80,"Pre-Commissioning/Flushing/Cleaning",7112,"CCGTD1_IPS",TT_Task,"58395",-,-,-,100,TK_Complete,15/10/2019,05/10/2019,23/10/2019,27/11/2019,"10EKT20-40 FS,CP1BZK7D25 FS,10EKT20-70 FS,10EKT20-60 FS","10EKT20-40,CP1BZK7D25,10EKT20-70,10EKT20-60","TOP2010 FS","TOP2010",219,255,221,262,51,59,51,61,79,,"CCGT D1_Integrated Programme Schedule;M&E;Construction;M&E Construction;Fuel Gas;Fuel Gas (EK);(10EKT20) Fuel Gas Preheating System 10EKT20",4,1,0.0000101091,0.0026449644,0.0093591048,8,0.0,0.0008532251,0.0273972603,0.0030769231,0.0152598634,0.0067885117,0.0296010296,0.0179372197,0.0,0.3163199525
1.3.1.1.14.1.1-5,10EKT20-40,"EC+I",7112,"CCGTD1_IPS",TT_Task,"58395",-,-,-,100,TK_Complete,30/04/2019,15/05/2019,05/06/2019,27/09/2019,"10EKT20-20 FS","10EKT20-20","10EKT20-80 FS","10EKT20-80",195,234,201,254,45,54,46,59,56,,"CCGT D1_Integrated Programme Schedule;M&E;Construction;M&E Construction;Fuel Gas;Fuel Gas (EK);(10EKT20) Fuel Gas Preheating System 10EKT20",1,1,0.000000483,0.0028484232,0.001017294,36,0.0,0.0001110825,0.0068493151,0.0030769231,0.0007291667,0.007310705,0.0032175032,0.0807174888,0.0,0.0122284391
1.3.1.1.14.1.1-6,10EKT20-60,"Hydro Test",7112,"CCGTD1_IPS",TT_Task,"58395",-,-,-,100,TK_Complete,05/10/2019,11/10/2019,15/10/2019,16/10/2019,"10EKT20-50 FS","10EKT20-50","10EKT20-80 FS","10EKT20-80",218,256,219,256,50,59,51,59,79,,"CCGT D1_Integrated Programme Schedule;M&E;Construction;M&E Construction;Fuel Gas;Fuel Gas (EK);(10EKT20) Fuel Gas Preheating System 10EKT20",1,1,0.000001739,0.0028484232,0.0016276704,10,1.0,0.0002938647,0.0068493151,0.0030769231,0.002625,0.007310705,0.0051480051,0.0224215247,1.0,0.0871230987
1.3.1.1.14.1.1-7,10EKT20-70,"Painting/Insulation",7112,"CCGTD1_IPS",TT_Task,"58395",-,-,-,100,TK_Complete,25/06/2019,14/06/2019,17/07/2019,27/11/2019,"10EKT20-20 FS","10EKT20-20","10EKT20-80 FS","10EKT20-80",203,239,207,262,47,55,48,61,64,,"CCGT D1_Integrated Programme Schedule;M&E;Construction;M&E Construction;Fuel Gas;Fuel Gas (EK);(10EKT20) Fuel Gas Preheating System 10EKT20",1,1,0.000000483,0.0028484232,0.001017294,22,0.0,0.0000994766,0.0068493151,0.0030769231,0.0007291667,0.007310705,0.0032175032,0.0493273543,0.0,0.007472935
1.3.1.1.14.1.1-8,10EKT20-30,"Install Small Bore Pipe/Valves/Supports",7112,"CCGTD1_IPS",TT_Task,"58395",-,-,-,100,TK_Complete,13/05/2019,13/05/2019,07/06/2019,12/09/2019,"10EKT20-20 SS","10EKT20-20","10EKT20-90 FF","10EKT20-90",197,234,201,251,46,54,46,58,58,,"CCGT D1_Integrated Programme Schedule;M&E;Construction;M&E Construction;Fuel Gas;Fuel Gas (EK);(10EKT20) Fuel Gas Preheating System 10EKT20",1,1,0.0,0.0034587996,0.001017294,25,0.0,0.0001019636,0.0068493151,0.0030769231,0.0,0.0088772846,0.0032175032,0.0560538117,0.0,0.0084919716
1.3.1.1.14.1.1-9,10EKT20-50,"Line Inspection",7112,"CCGTD1_IPS",TT_Task,"58395",-,-,-,100,TK_Complete,09/09/2019,28/09/2019,16/09/2019,16/10/2019,"10EKT20-90 FS","10EKT20-90","10EKT20-60 FS","10EKT20-60",214,254,215,256,50,59,50,59,76,,"CCGT D1_Integrated Programme Schedule;M&E;Construction;M&E Construction;Fuel Gas;Fuel Gas (EK);(10EKT20) Fuel Gas Preheating System 10EKT20",1,1,0.0000014491,0.003051882,0.0014242116,7,0.0,0.0002496983,0.0068493151,0.0030769231,0.0021875,0.0078328982,0.0045045045,0.0156950673,0.0,0.0690259896
1.3.1.1.14.1.2,58394,"(00EK) Fuel Gas Conditioning System EKD (incl. Fuel Gas Supply for QHA)",7112,"CCGTD1_IPS",WBS,"58392",,,,100,Complete,03/04/2019,01/03/2019,31/10/2019,16/12/2019,,,,,192,224,222,265,44,52,51,61,,,"CCGT D1_Integrated Programme Schedule;M&E;Construction;M&E Construction;Fuel Gas;Fuel Gas (EK)"
1.3.1.1.14.1.2-1,00EK09,"Erection of Blending Station",7112,"CCGTD1_IPS",TT_Task,"58394",-,-,-,100,TK_Complete,30/04/2019,25/05/2019,22/05/2019,27/07/2019,"KD_D10 FS","KD_D10","00EK40 FS","00EK40",195,236,199,245,45,55,46,57,56,,"CCGT D1_Integrated Programme Schedule;M&E;Construction;M&E Construction;Fuel Gas;Fuel Gas (EK);(00EK) Fuel Gas Conditioning System EKD (incl. Fuel Gas Supply for QHA)",1,1,0.0000003519,0.0026449644,0.0004069176,22,0.0,0.0000923442,0.0068493151,0.0030769231,0.00053125,0.0067885117,0.0012870013,0.0493273543,0.0,0.0045504603
1.3.1.1.14.1.2-2,00EK40,"EC+I",7112,"CCGTD1_IPS",TT_Task,"58394",-,-,-,100,TK_Complete,23/05/2019,23/05/2019,05/07/2019,26/09/2019,"00EK09 FS","00EK09","00EK80 FS","00EK80",199,235,205,253,46,55,47,59,59,,"CCGT D1_Integrated Programme Schedule;M&E;Construction;M&E Construction;Fuel Gas;Fuel Gas (EK);(00EK) Fuel Gas Conditioning System EKD (incl. Fuel Gas Supply for QHA)",1,1,0.000000766,0.0024415056,0.0006103764,43,0.0,0.0001598458,0.0068493151,0.0030769231,0.00115625,0.0062663185,0.0019305019,0.0964125561,0.0,0.032209115
1.3.1.1.14.1.2-3,00EK10,"Install Equipment/Skids/Pumps",7112,"CCGTD1_IPS",TT_Task,"58394",-,-,-,100,TK_Complete,30/04/2019,07/05/2019,05/06/2019,20/07/2019,"KD_D10 FS","KD_D10","00EK20 FS","00EK20",195,233,201,244,45,54,46,56,56,,"CCGT D1_Integrated Programme Schedule;M&E;Construction;M&E Construction;Fuel Gas;Fuel Gas (EK);(00EK) Fuel Gas Conditioning System EKD (incl. Fuel Gas Supply for QHA)",1,1,0.0000002484,0.0036622584,0.0004069176,36,0.0,0.0000994114,0.0068493151,0.0030769231,0.000375,0.0093994778,0.0012870013,0.0807174888,0.0,0.0074462077
1.3.1.1.14.1.2-4,00EK20,"Install Large Bore Pipe/Valves/Supports",7112,"CCGTD1_IPS",TT_Task,"58394",-,-,-,100,TK_Complete,03/04/2019,01/03/2019,06/06/2019,14/09/2019,"SI1--P4A40 FS,00EK10 FS,SI1--P4H40 FS,SI---P4I40 FS","SI1--P4A40,00EK10,SI1--P4H40,SI---P4I40","00EK35 SS,00EK30 SS,00EK70 FS","00EK35,00EK30,00EK70",192,224,201,252,44,52,46,58,52,,"CCGT D1_Integrated Programme Schedule;M&E;Construction;M&E Construction;Fuel Gas;Fuel Gas (EK);(00EK) Fuel Gas Conditioning System EKD (incl. Fuel Gas Supply for QHA)",4,3,0.0000014181,0.0034587996,0.0012207528,64,0.0,0.0001720699,0.0273972603,0.0092307692,0.002140625,0.0088772846,0.0038610039,0.1434977578,0.0,0.0372179026
1.3.1.1.14.1.2-5,00EK80,"Pre-Commissioning/Flushing/Cleaning",7112,"CCGTD1_IPS",TT_Task,"58394",-,-,-,100,TK_Complete,19/10/2019,07/10/2019,31/10/2019,16/12/2019,"00EK40 FS,00EK30 FS,00EK60 FS,00EK70 FS","00EK40,00EK30,00EK60,00EK70","TOP2270 FS","TOP2270",220,255,222,265,51,59,51,61,80,,"CCGT D1_Integrated Programme Schedule;M&E;Construction;M&E Construction;Fuel Gas;Fuel Gas (EK);(00EK) Fuel Gas Conditioning System EKD (incl. Fuel Gas Supply for QHA)",4,1,0.0000045337,0.0022380468,0.0028484232,12,0.0,0.0006333256,0.0273972603,0.0030769231,0.00684375,0.0057441253,0.009009009,0.0269058296,0.0,0.2262165439
1.3.1.1.14.1.2-6,00EK60,"Hydro Test",7112,"CCGTD1_IPS",TT_Task,"58394",-,-,-,100,TK_Complete,10/10/2019,21/10/2019,19/10/2019,25/10/2019,"00EK50 FS,00EK35 FS","00EK50,00EK35","00EK80 FS","00EK80",219,257,220,258,51,60,51,60,79,,"CCGT D1_Integrated Programme Schedule;M&E;Construction;M&E Construction;Fuel Gas;Fuel Gas (EK);(00EK) Fuel Gas Conditioning System EKD (incl. Fuel Gas Supply for QHA)",2,1,0.0000009937,0.0024415056,0.002034588,9,1.0,0.000358922,0.0136986301,0.0030769231,0.0015,0.0062663185,0.0064350064,0.0201793722,1.0,0.1137801836
1.3.1.1.14.1.2-7,00EK70,"Painting/Insulation",7112,"CCGTD1_IPS",TT_Task,"58394",-,-,-,100,TK_Complete,26/07/2019,15/06/2019,06/08/2019,16/12/2019,"00EK20 FS","00EK20","00EK80 FS","00EK80",208,239,209,265,48,55,48,61,67,,"CCGT D1_Integrated Programme Schedule;M&E;Construction;M&E Construction;Fuel Gas;Fuel Gas (EK);(00EK) Fuel Gas Conditioning System EKD (incl. Fuel Gas Supply for QHA)",1,1,0.0000005383,0.0024415056,0.0014242116,11,0.0,0.000099341,0.0068493151,0.0030769231,0.0008125,0.0062663185,0.0045045045,0.0246636771,0.0,0.0074173798
1.3.1.1.14.1.2-8,00EK30,"Install Small Bore Pipe/Valves/Supports",7112,"CCGTD1_IPS",TT_Task,"58394",-,-,-,100,TK_Complete,06/04/2019,10/04/2019,16/05/2019,14/09/2019,"SI1--P4H40 FS,SI1--P4A40 FS,00EK20 SS","SI1--P4H40,SI1--P4A40,00EK20","00EK35 FS,00EK80 FS,00EK50 FS","00EK35,00EK80,00EK50",192,229,198,252,44,53,46,58,52,,"CCGT D1_Integrated Programme Schedule;M&E;Construction;M&E Construction;Fuel Gas;Fuel Gas (EK);(00EK) Fuel Gas Conditioning System EKD (incl. Fuel Gas Supply for QHA)",3,3,0.0000012732,0.003051882,0.0014242116,40,0.0,0.0001491087,0.0205479452,0.0092307692,0.001921875,0.0078328982,0.0045045045,0.0896860987,0.0,0.0278095781
1.3.1.1.14.1.2-9,00EK50,"Line Inspection",7112,"CCGTD1_IPS",TT_Task,"58394",-,-,-,100,TK_Complete,02/09/2019,28/09/2019,11/09/2019,17/10/2019,"00EK30 FS","00EK30","00EK60 FS","00EK60",213,254,215,256,49,59,50,59,74,,"CCGT D1_Integrated Programme Schedule;M&E;Construction;M&E Construction;Fuel Gas;Fuel Gas (EK);(00EK) Fuel Gas Conditioning System EKD (incl. Fuel Gas Supply for QHA)",1,1,0.0000000828,0.0026449644,0.0016276704,9,0.0,0.0001006038,0.0068493151,0.0030769231,0.000125,0.0067885117,0.0051480051,0.0201793722,0.0,0.0079347975
1.3.1.1.14.1.2-10,00EK35,"NDE",7112,"CCGTD1_IPS",TT_Task,"58394",-,-,-,100,TK_Complete,08/05/2019,08/05/2019,15/06/2019,28/09/2019,"00EK20 SS,00EK30 FS","00EK20,00EK30","00EK60 FS","00EK60",197,233,202,254,45,54,47,59,57,,"CCGT D1_Integrated Programme Schedule;M&E;Construction;M&E Construction;Fuel Gas;Fuel Gas (EK);(00EK) Fuel Gas Conditioning System EKD (incl. Fuel Gas Supply for QHA)",2,1,0.0000002484,0.0026449644,0.0016276704,38,0.0,0.0002255375,0.0136986301,0.0030769231,0.000375,0.0067885117,0.0051480051,0.0852017937,0.0,0.0591261539
1.3.1.1.14.1.3,58393,"(10EK) Fuel Gas Supply System for GT10",7112,"CCGTD1_IPS",WBS,"58392",,,,100,Complete,30/08/2018,13/08/2018,11/11/2019,10/12/2019,,,,,161,195,223,264,37,45,52,61,,,"CCGT D1_Integrated Programme Schedule;M&E;Construction;M&E Construction;Fuel Gas;Fuel Gas (EK)"
1.3.1.1.14.1.3-1,10EK80,"Pre-Commissioning/Flushing/Cleaning",7112,"CCGTD1_IPS",TT_Task,"58393",-,-,-,100,TK_Complete,31/10/2019,08/10/2019,11/11/2019,10/12/2019,"10EK60 FS,10EK40 FS,10EK70 FF","10EK60,10EK40,10EK70","TOP1800 FS","TOP1800",222,255,223,264,51,59,52,61,80,,"CCGT D1_Integrated Programme Schedule;M&E;Construction;M&E Construction;Fuel Gas;Fuel Gas (EK);(10EK) Fuel Gas Supply System for GT10",3,1,0.000007604,0.0022380468,0.0156663276,11,0.0,0.0006733082,0.0205479452,0.0030769231,0.0114783158,0.0057441253,0.0495495495,0.0246636771,0.0,0.2425993418
1.3.1.1.14.1.3-2,10EK40,"EC+I",7112,"CCGTD1_IPS",TT_Task,"58393",-,-,-,100,TK_Complete,03/07/2019,22/05/2019,25/07/2019,25/09/2019,"10EK10 FS,10EK30 FS,SI-BZP4-25 FS,SI-BZK4-25 FS,SI-C--4B40 FS,SI-CP-4-40 FS,SI-BZK4-58 FS,SI-C-4C40 FS,EDS.1090 FS","10EK10,10EK30,SI-BZP4-25,SI-BZK4-25,SI-C--4B40,SI-CP-4-40,SI-BZK4-58,SI-C-4C40,EDS.1090","10EK80 FS","10EK80",205,235,208,253,47,55,48,59,65,,"CCGT D1_Integrated Programme Schedule;M&E;Construction;M&E Construction;Fuel Gas;Fuel Gas (EK);(10EK) Fuel Gas Supply System for GT10",9,1,0.0000078938,0.0024415056,0.0148524924,22,0.0,0.0003522657,0.0616438356,0.0030769231,0.0119158158,0.0062663185,0.046975547,0.0493273543,0.0,0.111052809
1.3.1.1.14.1.3-3,10EK10,"Install Equipment/Skids/Pumps",7112,"CCGTD1_IPS",TT_Task,"58393",-,-,-,100,TK_Complete,31/05/2019,10/06/2019,18/06/2019,20/07/2019,"KD_E04 FS,KD_D06 FS,SI-EK-4-44 FS,KD_D10 FS,SI-EK-4-40 FS,SUB-BOP-160 FS,KD_E03 FS,KD_E05 FS,A1010 FS","KD_E04,KD_D06,SI-EK-4-44,KD_D10,SI-EK-4-40,SUB-BOP-160,KD_E03,KD_E05,A1010","10EK40 FS","10EK40",200,238,202,244,46,55,47,56,60,,"CCGT D1_Integrated Programme Schedule;M&E;Construction;M&E Construction;Fuel Gas;Fuel Gas (EK);(10EK) Fuel Gas Supply System for GT10",9,1,0.000008689,0.0026449644,0.0120040692,18,0.0,0.0002526939,0.0616438356,0.0030769231,0.0131161458,0.0067885117,0.037966538,0.0403587444,0.0,0.0702534164
1.3.1.1.14.1.3-4,10EK60,"Hydro Test",7112,"CCGTD1_IPS",TT_Task,"58393",-,-,-,100,TK_Complete,19/10/2019,19/10/2019,30/10/2019,21/10/2019,"10EK50 FS","10EK50","10EK80 FS","10EK80",220,257,222,257,51,60,51,60,80,,"CCGT D1_Integrated Programme Schedule;M&E;Construction;M&E Construction;Fuel Gas;Fuel Gas (EK);(10EK) Fuel Gas Supply System for GT10",1,1,0.0000004968,0.0024415056,0.0016276704,11,1.0,0.000191739,0.0068493151,0.0030769231,0.00075,0.0062663185,0.0051480051,0.0246636771,1.0,0.0452772875
1.3.1.1.14.1.3-5,10EK70,"Painting/Insulation",7112,"CCGTD1_IPS",TT_Task,"58393",-,-,-,100,TK_Complete,08/06/2019,16/05/2019,04/07/2019,10/12/2019,"10EK90 FS,10EK30 FS","10EK90,10EK30","10EK80 FF","10EK80",201,234,205,264,47,54,47,61,62,,"CCGT D1_Integrated Programme Schedule;M&E;Construction;M&E Construction;Fuel Gas;Fuel Gas (EK);(10EK) Fuel Gas Supply System for GT10",2,1,0.0000009109,0.0024415056,0.0014242116,26,0.0,0.0001513911,0.0136986301,0.0030769231,0.001375,0.0062663185,0.0045045045,0.0582959641,0.0,0.0287448108
1.3.1.1.14.1.3-6,10EK30,"Install Pipe/Valves/Supports (Inside+Outside)",7112,"CCGTD1_IPS",TT_Task,"58393",-,-,-,100,TK_Complete,06/04/2019,06/04/2019,13/05/2019,24/08/2019,"00EG-02-10 FS,10EK90 FS","00EG-02-10,10EK90","10EK40 FS,10EK70 FS,10EK50 FF","10EK40,10EK70,10EK50",192,229,197,249,44,53,46,58,52,,"CCGT D1_Integrated Programme Schedule;M&E;Construction;M&E Construction;Fuel Gas;Fuel Gas (EK);(10EK) Fuel Gas Supply System for GT10",2,3,0.0000011593,0.0032553408,0.0012207528,37,0.0,0.000143009,0.0136986301,0.0092307692,0.00175,0.0083550914,0.0038610039,0.0829596413,0.0,0.025310271
1.3.1.1.14.1.3-7,10EK50,"Line Inspection",7112,"CCGTD1_IPS",TT_Task,"58393",-,-,-,100,TK_Complete,30/09/2019,03/10/2019,18/10/2019,18/10/2019,"10EK90 FS,10EK30 FF","10EK90,10EK30","10EK60 FS","10EK60",217,254,220,257,50,59,51,59,78,,"CCGT D1_Integrated Programme Schedule;M&E;Construction;M&E Construction;Fuel Gas;Fuel Gas (EK);(10EK) Fuel Gas Supply System for GT10",2,1,0.0000002898,0.0026449644,0.0014242116,18,1.0,0.0001298058,0.0136986301,0.0030769231,0.0004375,0.0067885117,0.0045045045,0.0403587444,1.0,0.0199002536
1.3.1.1.14.1.3-8,10EK90,"Install Fuel Gas Piping  from Plant to Tie-in to Existing Line",7112,"CCGTD1_IPS",TT_Task,"58393",-,-,-,100,TK_Complete,30/08/2018,13/08/2018,17/10/2018,06/05/2019,"","","10EK30 FS,10EK50 FS,10EK70 FS","10EK30,10EK50,10EK70",161,195,168,233,37,45,39,54,36,,"CCGT D1_Integrated Programme Schedule;M&E;Construction;M&E Construction;Fuel Gas;Fuel Gas (EK);(10EK) Fuel Gas Supply System for GT10",0,3,0.0,0.0034587996,0.0,48,0.0,0.0000812387,0.0,0.0092307692,0.0,0.0088772846,0.0,0.1076233184,0.0,0.0
1.3.1.1.15,58387,"Fuel Oil",7112,"CCGTD1_IPS",WBS,"58325",,,,100,Complete,16/11/2018,01/09/2018,30/09/2019,30/11/2019,,,,,172,198,217,263,40,46,50,61,,,"CCGT D1_Integrated Programme Schedule;M&E;Construction;M&E Construction"
1.3.1.1.15.1,58388,"Fuel Oil (EG)",7112,"CCGTD1_IPS",WBS,"58387",,,,100,Complete,16/11/2018,01/09/2018,30/09/2019,30/11/2019,,,,,172,198,217,263,40,46,50,61,,,"CCGT D1_Integrated Programme Schedule;M&E;Construction;M&E Construction;Fuel Oil"
1.3.1.1.15.1.1,58390,"(00EG-02) Fuel Oil Forwarding Station incl. Supply Lines up to Fuel Oil System to Plant",7112,"CCGTD1_IPS",WBS,"58388",,,,100,Complete,16/11/2018,01/09/2018,13/09/2019,30/11/2019,,,,,172,198,215,263,40,46,50,61,,,"CCGT D1_Integrated Programme Schedule;M&E;Construction;M&E Construction;Fuel Oil;Fuel Oil (EG)"
1.3.1.1.15.1.1-1,00EG-02-40,"EC+I",7112,"CCGTD1_IPS",TT_Task,"58390",-,-,-,100,TK_Complete,04/07/2019,08/06/2019,17/07/2019,28/09/2019,"EDKS.1000 FS,SI-C-4C40 FS,00EG-02-10 FS,SI-C--4B40 FS,SI-CP-4-40 FS,CP-BZP7B15 FS,EDS.1090 FS,SI-BZK4-25 FS,SI-BZK4-58 FS,SI-BZP4-25 FS,00EG-02-30 FS","EDKS.1000,SI-C-4C40,00EG-02-10,SI-C--4B40,SI-CP-4-40,CP-BZP7B15,EDS.1090,SI-BZK4-25,SI-BZK4-58,SI-BZP4-25,00EG-02-30","00EG-02-80 FF","00EG-02-80",205,238,207,254,47,55,48,59,65,,"CCGT D1_Integrated Programme Schedule;M&E;Construction;M&E Construction;Fuel Oil;Fuel Oil (EG);(00EG-02) Fuel Oil Forwarding Station incl. Supply Lines up to Fuel Oil System to Plant",11,1,0.0000050134,0.0024415056,0.0087487284,13,0.0,0.0002276574,0.0753424658,0.0030769231,0.0075678991,0.0062663185,0.0276705277,0.0291479821,0.0,0.0599947763
1.3.1.1.15.1.1-2,00EG-02-10,"Install Equipment/Skids/Pumps",7112,"CCGTD1_IPS",TT_Task,"58390",-,-,-,100,TK_Complete,15/02/2019,15/09/2018,01/03/2019,25/09/2018,"SI0EG-4-44 FS,SI1--P4H40 FS,KD_E02 FS","SI0EG-4-44,SI1--P4H40,KD_E02","00EG-02-40 FS,00EG-02-20 FS,10EK30 FS","00EG-02-40,00EG-02-20,10EK30",185,200,187,201,43,46,43,47,47,,"CCGT D1_Integrated Programme Schedule;M&E;Construction;M&E Construction;Fuel Oil;Fuel Oil (EG);(00EG-02) Fuel Oil Forwarding Station incl. Supply Lines up to Fuel Oil System to Plant",3,3,0.0000018321,0.00508647,0.0008138352,14,1.0,0.0001178705,0.0205479452,0.0092307692,0.002765625,0.0130548303,0.0025740026,0.0313901345,1.0,0.0150097939
1.3.1.1.15.1.1-3,00EG-02-20,"Install Large Bore Pipe/Valves/Supports",7112,"CCGTD1_IPS",TT_Task,"58390",-,-,-,100,TK_Complete,16/11/2018,01/09/2018,28/01/2019,21/05/2019,"SI---P4I40 FS,00EG-02-10 FS,SI1--P4A40 FS,SI1--P4H40 FS,KD_E02 FS","SI---P4I40,00EG-02-10,SI1--P4A40,SI1--P4H40,KD_E02","00EG-02-30 FS","00EG-02-30",172,198,182,235,40,46,42,54,38,,"CCGT D1_Integrated Programme Schedule;M&E;Construction;M&E Construction;Fuel Oil;Fuel Oil (EG);(00EG-02) Fuel Oil Forwarding Station incl. Supply Lines up to Fuel Oil System to Plant",5,1,0.0000007867,0.0034587996,0.0014242116,73,0.0,0.0001687283,0.0342465753,0.0030769231,0.0011875,0.0088772846,0.0045045045,0.16367713,0.0,0.0358486942
1.3.1.1.15.1.1-4,00EG-02-60,"Hydro Test",7112,"CCGTD1_IPS",TT_Task,"58390",-,-,-,100,TK_Complete,31/07/2019,10/08/2019,14/08/2019,17/08/2019,"00EG-02-50 FS","00EG-02-50","00EG-02-80 FS","00EG-02-80",209,247,211,248,48,57,49,57,67,,"CCGT D1_Integrated Programme Schedule;M&E;Construction;M&E Construction;Fuel Oil;Fuel Oil (EG);(00EG-02) Fuel Oil Forwarding Station incl. Supply Lines up to Fuel Oil System to Plant",1,1,0.0000004968,0.0024415056,0.002034588,14,1.0,0.0001948473,0.0068493151,0.0030769231,0.00075,0.0062663185,0.0064350064,0.0313901345,1.0,0.0465509068
1.3.1.1.15.1.1-5,00EG-02-70,"Painting/Insulation",7112,"CCGTD1_IPS",TT_Task,"58390",-,-,-,100,TK_Complete,04/07/2019,04/06/2019,26/07/2019,30/11/2019,"00EG-02-30 FS","00EG-02-30","00EG-02-80 FF","00EG-02-80",205,237,208,263,47,55,48,61,65,,"CCGT D1_Integrated Programme Schedule;M&E;Construction;M&E Construction;Fuel Oil;Fuel Oil (EG);(00EG-02) Fuel Oil Forwarding Station incl. Supply Lines up to Fuel Oil System to Plant",1,1,0.0000006211,0.0024415056,0.0018311292,22,0.0,0.0001695476,0.0068493151,0.0030769231,0.0009375,0.0062663185,0.0057915058,0.0493273543,0.0,0.036184385
1.3.1.1.15.1.1-6,00EG-02-30,"Install Small Bore Pipe/Valves/Supports",7112,"CCGTD1_IPS",TT_Task,"58390",-,-,-,100,TK_Complete,10/06/2019,10/05/2019,08/07/2019,20/07/2019,"00EG-02-20 FS,SI1--P4A40 FS,SI1--P4H40 FS","00EG-02-20,SI1--P4A40,SI1--P4H40","00EG-02-40 FS,00EG-02-70 FS,00EG-02-50 FS","00EG-02-40,00EG-02-70,00EG-02-50",201,234,205,244,47,54,48,56,62,,"CCGT D1_Integrated Programme Schedule;M&E;Construction;M&E Construction;Fuel Oil;Fuel Oil (EG);(00EG-02) Fuel Oil Forwarding Station incl. Supply Lines up to Fuel Oil System to Plant",3,3,0.0000018632,0.0032553408,0.0016276704,28,0.0,0.0002262926,0.0205479452,0.0092307692,0.0028125,0.0083550914,0.0051480051,0.0627802691,0.0,0.0594355686
1.3.1.1.15.1.1-7,00EG-02-50,"Line Inspection",7112,"CCGTD1_IPS",TT_Task,"58390",-,-,-,100,TK_Complete,02/07/2019,20/07/2019,15/07/2019,27/07/2019,"00EG-02-30 FS","00EG-02-30","00EG-02-60 FS","00EG-02-60",204,244,206,245,47,56,48,57,65,,"CCGT D1_Integrated Programme Schedule;M&E;Construction;M&E Construction;Fuel Oil;Fuel Oil (EG);(00EG-02) Fuel Oil Forwarding Station incl. Supply Lines up to Fuel Oil System to Plant",1,1,0.0000003726,0.0026449644,0.0018311292,13,1.0,0.0001334212,0.0068493151,0.0030769231,0.0005625,0.0067885117,0.0057915058,0.0291479821,1.0,0.0213816821
1.3.1.1.15.1.1-8,00EG-02-80,"Pre-Commissioning/Flushing/Cleaning",7112,"CCGTD1_IPS",TT_Task,"58390",-,-,-,100,TK_Complete,31/08/2019,28/09/2019,13/09/2019,30/11/2019,"00EG-02-70 FF,00EG-02-60 FS,00EG-02-40 FF","00EG-02-70,00EG-02-60,00EG-02-40","TOP2310 FS","TOP2310",213,254,215,263,49,59,50,61,70,,"CCGT D1_Integrated Programme Schedule;M&E;Construction;M&E Construction;Fuel Oil;Fuel Oil (EG);(00EG-02) Fuel Oil Forwarding Station incl. Supply Lines up to Fuel Oil System to Plant",3,1,0.0000056759,0.0022380468,0.0095625636,13,0.0,0.0005853181,0.0205479452,0.0030769231,0.0085678991,0.0057441253,0.0302445302,0.0291479821,0.0,0.2065455884
1.3.1.1.15.1.2,58389,"(00EG-01) Fuel Oil Forwarding System",7112,"CCGTD1_IPS",WBS,"58388",,,,100,Complete,18/02/2019,15/09/2018,30/09/2019,08/11/2019,,,,,185,200,217,260,43,46,50,60,,,"CCGT D1_Integrated Programme Schedule;M&E;Construction;M&E Construction;Fuel Oil;Fuel Oil (EG)"
1.3.1.1.15.1.2-1,00EG-01-10,"Install Equipment/Skids/Pumps",7112,"CCGTD1_IPS",TT_Task,"58389",-,-,-,100,TK_Complete,18/02/2019,15/09/2018,06/03/2019,25/09/2018,"SI0EG-4-44 FS,KD_D06 FS,SUB-BOP-160 FS,A1010 FS,KD_E02 FS","SI0EG-4-44,KD_D06,SUB-BOP-160,A1010,KD_E02","00EG-01-50 FS,00EG-01-20 FS","00EG-01-50,00EG-01-20",185,200,188,201,43,46,43,47,47,,"CCGT D1_Integrated Programme Schedule;M&E;Construction;M&E Construction;Fuel Oil;Fuel Oil (EG);(00EG-01) Fuel Oil Forwarding System",5,2,0.0000180469,0.0032553408,0.011190234,16,1.0,0.0001404552,0.0342465753,0.0061538462,0.0272421875,0.0083550914,0.0353925354,0.0358744395,1.0,0.0242638347
1.3.1.1.15.1.2-2,00EG-01-50,"EC+I",7112,"CCGTD1_IPS",TT_Task,"58389",-,-,-,100,TK_Complete,10/06/2019,10/05/2019,04/07/2019,27/09/2019,"EDS.1090 FS,SI-C--4B40 FS,SI-CP-4-40 FS,00EG-01-10 FS,SI-C-4C40 FS,00EG-01-30 FS,CP-BZP7B15 FS,SI-BZP4-25 FS,SI-BZK4-58 FS,SI-BZK4-25 FS","EDS.1090,SI-C--4B40,SI-CP-4-40,00EG-01-10,SI-C-4C40,00EG-01-30,CP-BZP7B15,SI-BZP4-25,SI-BZK4-58,SI-BZK4-25","00EG-01-60 FS,00EG-01-90 FS,00EG-01-70 FS","00EG-01-60,00EG-01-90,00EG-01-70",201,234,205,254,47,54,47,59,62,,"CCGT D1_Integrated Programme Schedule;M&E;Construction;M&E Construction;Fuel Oil;Fuel Oil (EG);(00EG-01) Fuel Oil Forwarding System",10,3,0.0000159365,0.0024415056,0.0189216684,24,0.0,0.0002644975,0.0684931507,0.0092307692,0.0240564904,0.0062663185,0.0598455598,0.0538116592,0.0,0.0750899235
1.3.1.1.15.1.2-3,00EG-01-20,"Install Large Bore Pipe/Valves/Supports",7112,"CCGTD1_IPS",TT_Task,"58389",-,-,-,100,TK_Complete,06/03/2019,15/09/2018,03/05/2019,27/07/2019,"SI1--P4A40 FS,SI1--P4H40 FS,SI---P4I40 FS,00EG-01-10 FS","SI1--P4A40,SI1--P4H40,SI---P4I40,00EG-01-10","00EG-01-30 FS,00EG-01-80 FS","00EG-01-30,00EG-01-80",188,200,196,245,43,46,45,57,48,,"CCGT D1_Integrated Programme Schedule;M&E;Construction;M&E Construction;Fuel Oil;Fuel Oil (EG);(00EG-01) Fuel Oil Forwarding System",4,2,0.0000050513,0.003051882,0.0120040692,58,0.0,0.0001714343,0.0273972603,0.0061538462,0.007625,0.0078328982,0.037966538,0.130044843,0.0,0.0369574593
1.3.1.1.15.1.2-4,00EG-01-70,"Hydro Test",7112,"CCGTD1_IPS",TT_Task,"58389",-,-,-,100,TK_Complete,07/08/2019,10/08/2019,21/08/2019,17/08/2019,"00EG-01-60 FS,00EG-01-50 FS","00EG-01-60,00EG-01-50","00EG-01-90 FS","00EG-01-90",210,247,212,248,49,57,49,57,69,,"CCGT D1_Integrated Programme Schedule;M&E;Construction;M&E Construction;Fuel Oil;Fuel Oil (EG);(00EG-01) Fuel Oil Forwarding System",2,1,0.000000414,0.002034588,0.019328586,14,1.0,0.0002881058,0.0136986301,0.0030769231,0.000625,0.0052219321,0.0611325611,0.0313901345,1.0,0.0847633996
1.3.1.1.15.1.2-5,00EG-01-80,"Painting/Insulation",7112,"CCGTD1_IPS",TT_Task,"58389",-,-,-,100,TK_Complete,03/05/2019,03/05/2019,15/06/2019,28/09/2019,"00EG-01-20 FS","00EG-01-20","00EG-01-90 FS","00EG-01-90",196,233,202,254,45,54,47,59,57,,"CCGT D1_Integrated Programme Schedule;M&E;Construction;M&E Construction;Fuel Oil;Fuel Oil (EG);(00EG-01) Fuel Oil Forwarding System",1,1,0.0000005797,0.002034588,0.012207528,43,0.0,0.0001672089,0.0068493151,0.0030769231,0.000875,0.0052219321,0.0386100386,0.0964125561,0.0,0.035226107
1.3.1.1.15.1.2-6,00EG-01-30,"Install Small Bore Pipe/Valves/Supports",7112,"CCGTD1_IPS",TT_Task,"58389",-,-,-,100,TK_Complete,03/04/2019,05/04/2019,03/05/2019,27/07/2019,"SI1--P4A40 FS,00EG-01-20 FS,SI1--P4H40 FS","SI1--P4A40,00EG-01-20,SI1--P4H40","00EG-01-50 FS","00EG-01-50",192,229,196,245,44,53,45,57,52,,"CCGT D1_Integrated Programme Schedule;M&E;Construction;M&E Construction;Fuel Oil;Fuel Oil (EG);(00EG-01) Fuel Oil Forwarding System",3,1,0.0000005797,0.0026449644,0.012207528,30,0.0,0.0001427505,0.0205479452,0.0030769231,0.000875,0.0067885117,0.0386100386,0.067264574,0.0,0.0252043195
1.3.1.1.15.1.2-7,00EG-01-60,"Line Inspection",7112,"CCGTD1_IPS",TT_Task,"58389",-,-,-,100,TK_Complete,23/07/2019,24/07/2019,05/08/2019,10/08/2019,"00EG-01-50 FS","00EG-01-50","00EG-01-70 FS","00EG-01-70",207,244,209,247,48,57,48,57,66,,"CCGT D1_Integrated Programme Schedule;M&E;Construction;M&E Construction;Fuel Oil;Fuel Oil (EG);(00EG-01) Fuel Oil Forwarding System",1,1,0.0,0.0022380468,0.0191251272,13,0.8,0.0001526395,0.0068493151,0.0030769231,0.0,0.0057441253,0.0604890605,0.0291479821,0.8,0.0292563497
1.3.1.1.15.1.2-8,00EG-01-90,"Pre-Commissioning/Flushing/Cleaning",7112,"CCGTD1_IPS",TT_Task,"58389",-,-,-,100,TK_Complete,16/09/2019,28/09/2019,30/09/2019,08/11/2019,"00EG-01-80 FS,00EG-01-50 FS,00EG-01-70 FS","00EG-01-80,00EG-01-50,00EG-01-70","TOP2300 FS","TOP2300",215,254,217,260,50,59,50,60,76,,"CCGT D1_Integrated Programme Schedule;M&E;Construction;M&E Construction;Fuel Oil;Fuel Oil (EG);(00EG-01) Fuel Oil Forwarding System",3,1,0.000006455,0.0018311292,0.0197355036,14,0.0,0.0005458398,0.0205479452,0.0030769231,0.0097439904,0.0046997389,0.0624195624,0.0313901345,0.0,0.1903693951
1.3.1.1.16,58382,"Feedwater",7112,"CCGTD1_IPS",WBS,"58325",,,,100,Complete,21/01/2019,15/01/2019,24/10/2019,14/11/2019,,,,,181,217,221,260,42,50,51,60,,,"CCGT D1_Integrated Programme Schedule;M&E;Construction;M&E Construction"
1.3.1.1.16.1,58383,"Feedwater (LA)",7112,"CCGTD1_IPS",WBS,"58382",,,,100,Complete,21/01/2019,15/01/2019,24/10/2019,14/11/2019,,,,,181,217,221,260,42,50,51,60,,,"CCGT D1_Integrated Programme Schedule;M&E;Construction;M&E Construction;Feedwater"
1.3.1.1.16.1.1,58386,"(00LAB) Feedwater Supply System from Common Plant",7112,"CCGTD1_IPS",WBS,"58383",,,,100,Complete,21/01/2019,15/01/2019,23/10/2019,04/11/2019,,,,,181,217,221,259,42,50,51,60,,,"CCGT D1_Integrated Programme Schedule;M&E;Construction;M&E Construction;Feedwater;Feedwater (LA)"
1.3.1.1.16.1.1-1,00LAB20,"Install NOx Piping from Existing Demin Tank to GT NOx Control Pump including Recir Line",7112,"CCGTD1_IPS",TT_Task,"58386",-,-,-,100,TK_Complete,24/04/2019,24/04/2019,16/07/2019,10/08/2019,"10MBU10 FS,SI---P4I40 FS,SUB-BOP-160 FS,KD_E03 FS,KD_E04 FS,KD_E05 FS,A1010 FS","10MBU10,SI---P4I40,SUB-BOP-160,KD_E03,KD_E04,KD_E05,A1010","00LAB40 SS,00LAB80 FS","00LAB40,00LAB80",195,231,206,247,45,54,48,57,55,,"CCGT D1_Integrated Programme Schedule;M&E;Construction;M&E Construction;Feedwater;Feedwater (LA);(00LAB) Feedwater Supply System from Common Plant",7,2,0.0000355911,0.004069176,0.0168870804,83,0.0,0.0004454679,0.0479452055,0.0061538462,0.0537255208,0.0104438642,0.0534105534,0.1860986547,0.0,0.1492422365
1.3.1.1.16.1.1-2,00LAB80,"Painting/Insulation",7112,"CCGTD1_IPS",TT_Task,"58386",-,-,-,100,TK_Complete,13/08/2019,10/08/2019,20/09/2019,15/10/2019,"00LAB20 FS,00LAB70 FS","00LAB20,00LAB70","00LAB90 FS","00LAB90",210,247,216,256,49,57,50,59,69,,"CCGT D1_Integrated Programme Schedule;M&E;Construction;M&E Construction;Feedwater;Feedwater (LA);(00LAB) Feedwater Supply System from Common Plant",2,1,0.0000225075,0.0032553408,0.0181078332,38,0.0,0.0005461001,0.0136986301,0.0030769231,0.0339755208,0.0083550914,0.0572715573,0.0852017937,0.0,0.1904760653
1.3.1.1.16.1.1-3,00LAB50,"EC+I",7112,"CCGTD1_IPS",TT_Task,"58386",-,-,-,100,TK_Complete,23/07/2019,23/05/2019,06/09/2019,19/09/2019,"SI-CP-4-40 FS,SI-C--4B40 FS,00LAB30 SS,00LAB30 FS,SI-BZK4-25 FS,SI-BZK4-58 FS","SI-CP-4-40,SI-C--4B40,00LAB30,00LAB30,SI-BZK4-25,SI-BZK4-58","00LAB90 FS","00LAB90",207,235,214,252,48,55,50,59,66,,"CCGT D1_Integrated Programme Schedule;M&E;Construction;M&E Construction;Feedwater;Feedwater (LA);(00LAB) Feedwater Supply System from Common Plant",5,1,0.0000023944,0.0032553408,0.0014242116,45,0.0,0.000166854,0.0342465753,0.0030769231,0.0036144593,0.0083550914,0.0045045045,0.100896861,0.0,0.0350806967
1.3.1.1.16.1.1-4,00LAB30,"Install Make-up Water Piping from Existing Demin Tank to Connection Points of New CCGT",7112,"CCGTD1_IPS",TT_Task,"58386",-,-,-,100,TK_Complete,30/04/2019,15/05/2019,22/07/2019,17/08/2019,"00LAB10 SS","00LAB10","00LAB50 SS,00LAB50 FS,00LAB40 FF","00LAB50,00LAB50,00LAB40",195,234,207,248,45,54,48,57,55,,"CCGT D1_Integrated Programme Schedule;M&E;Construction;M&E Construction;Feedwater;Feedwater (LA);(00LAB) Feedwater Supply System from Common Plant",1,2,0.0000008695,0.0042726348,0.0002034588,83,0.0,0.0001503957,0.0068493151,0.0061538462,0.0013125,0.0109660574,0.0006435006,0.1860986547,0.0,0.0283369572
1.3.1.1.16.1.1-5,00LAB40,"NDE",7112,"CCGTD1_IPS",TT_Task,"58386",-,-,-,100,TK_Complete,22/06/2019,14/05/2019,29/07/2019,20/09/2019,"00LAB20 SS,00LAB30 FF","00LAB20,00LAB30","00LAB60 FS","00LAB60",203,234,208,253,47,54,48,59,64,,"CCGT D1_Integrated Programme Schedule;M&E;Construction;M&E Construction;Feedwater;Feedwater (LA);(00LAB) Feedwater Supply System from Common Plant",2,1,0.0000072043,0.0038657172,0.0174974568,37,0.0,0.0003261645,0.0136986301,0.0030769231,0.010875,0.009921671,0.0553410553,0.0829596413,0.0,0.1003578615
1.3.1.1.16.1.1-6,00LAB60,"Line Inspection",7112,"CCGTD1_IPS",TT_Task,"58386",-,-,-,100,TK_Complete,20/07/2019,11/07/2019,29/07/2019,13/07/2019,"00LAB40 FS","00LAB40","00LAB70 FS","00LAB70",207,242,208,243,48,56,48,56,66,,"CCGT D1_Integrated Programme Schedule;M&E;Construction;M&E Construction;Feedwater;Feedwater (LA);(00LAB) Feedwater Supply System from Common Plant",1,1,0.0000043888,0.0036622584,0.0177009156,9,1.0,0.00035904,0.0068493151,0.0030769231,0.006625,0.0093994778,0.055984556,0.0201793722,1.0,0.1138285317
1.3.1.1.16.1.1-7,00LAB70,"Hydro Test",7112,"CCGTD1_IPS",TT_Task,"58386",-,-,-,100,TK_Complete,30/09/2019,11/10/2019,09/10/2019,19/10/2019,"00LAB60 FS","00LAB60","00LAB80 FS,00LAB90 FS","00LAB80,00LAB90",217,256,219,257,50,59,51,60,77,,"CCGT D1_Integrated Programme Schedule;M&E;Construction;M&E Construction;Feedwater;Feedwater (LA);(00LAB) Feedwater Supply System from Common Plant",1,2,0.0000014905,0.0034587996,0.0179043744,9,1.0,0.0003871424,0.0068493151,0.0061538462,0.00225,0.0088772846,0.0566280566,0.0201793722,1.0,0.125343437
1.3.1.1.16.1.1-8,00LAB90,"Pre-Commissioning/Flushing/Cleaning",7112,"CCGTD1_IPS",TT_Task,"58386",-,-,-,100,TK_Complete,15/10/2019,15/10/2019,23/10/2019,04/11/2019,"00LAB80 FS,00LAB50 FS,00LAB70 FS","00LAB80,00LAB50,00LAB70","TOP1930 FS","TOP1930",219,256,221,259,51,59,51,60,79,,"CCGT D1_Integrated Programme Schedule;M&E;Construction;M&E Construction;Feedwater;Feedwater (LA);(00LAB) Feedwater Supply System from Common Plant",3,1,0.0000242809,0.003051882,0.019328586,8,0.0,0.0007468771,0.0205479452,0.0030769231,0.0366524802,0.0078328982,0.0611325611,0.0179372197,0.0,0.2727440536
1.3.1.1.16.1.1-9,00LAB10,"Install Make-up Water/NOx Pumps & Pressure System (Tank/Controls)",7112,"CCGTD1_IPS",TT_Task,"58386",-,-,-,100,TK_Complete,21/01/2019,15/01/2019,21/02/2019,07/05/2019,"","","00LAB30 SS","00LAB30",181,217,186,233,42,50,43,54,43,,"CCGT D1_Integrated Programme Schedule;M&E;Construction;M&E Construction;Feedwater;Feedwater (LA);(00LAB) Feedwater Supply System from Common Plant",0,1,0.0,0.0044760936,0.0,31,0.0,0.0000812387,0.0,0.0030769231,0.0,0.0114882507,0.0,0.0695067265,0.0,0.0
1.3.1.1.16.1.2,58385,"(10LAB) HP/IP Feedwater Supply System",7112,"CCGTD1_IPS",WBS,"58383",,,,100,Complete,28/02/2019,28/02/2019,24/10/2019,14/11/2019,,,,,187,223,221,260,43,52,51,60,,,"CCGT D1_Integrated Programme Schedule;M&E;Construction;M&E Construction;Feedwater;Feedwater (LA)"
1.3.1.1.16.1.2-1,10LAB20,"Install Large Bore Pipe/Valves/Supports",7112,"CCGTD1_IPS",TT_Task,"58385",-,-,-,100,TK_Complete,28/02/2019,28/02/2019,10/05/2019,20/07/2019,"10LAB10 SS,A2380 FS,SI---P4I40 FS,SI1--P4A40 FS,SI1--P4H40 FS,10LAC10 FS","10LAB10,A2380,SI---P4I40,SI1--P4A40,SI1--P4H40,10LAC10","10LAB80 FF,10LDK-20 SS,10LAB30 FS,10LAB40 SS","10LAB80,10LDK-20,10LAB30,10LAB40",187,223,197,244,43,52,46,56,48,,"CCGT D1_Integrated Programme Schedule;M&E;Construction;M&E Construction;Feedwater;Feedwater (LA);(10LAB) HP/IP Feedwater Supply System",6,4,0.0000128766,0.0067141404,0.0034587996,71,0.0,0.0004038763,0.0410958904,0.0123076923,0.0194375,0.017232376,0.0109395109,0.1591928251,0.0,0.1322001315
1.3.1.1.16.1.2-2,10LAB80,"Insulation of Pipework Prior to Neutral Float",7112,"CCGTD1_IPS",TT_Task,"58385",-,-,-,100,TK_Complete,07/06/2019,14/06/2019,02/07/2019,14/09/2019,"10LAB20 FF,10LAB30 FF","10LAB20,10LAB30","10LAB60 FF","10LAB60",201,239,204,252,46,55,47,58,62,,"CCGT D1_Integrated Programme Schedule;M&E;Construction;M&E Construction;Feedwater;Feedwater (LA);(10LAB) HP/IP Feedwater Supply System",2,1,0.0000015733,0.004069176,0.0038657172,25,0.0,0.0001677503,0.0136986301,0.0030769231,0.002375,0.0104438642,0.0122265122,0.0560538117,0.0,0.0354479724
1.3.1.1.16.1.2-3,10LAB50,"EC+I",7112,"CCGTD1_IPS",TT_Task,"58385",-,-,-,100,TK_Complete,31/05/2019,24/05/2019,06/07/2019,19/09/2019,"10LAB30 SS","10LAB30","10LAB90 FF","10LAB90",200,236,205,252,46,55,47,59,60,,"CCGT D1_Integrated Programme Schedule;M&E;Construction;M&E Construction;Feedwater;Feedwater (LA);(10LAB) HP/IP Feedwater Supply System",1,1,0.0000048029,0.0032553408,0.0038657172,36,0.0,0.0001279503,0.0068493151,0.0030769231,0.00725,0.0083550914,0.0122265122,0.0807174888,0.0,0.0191399677
1.3.1.1.16.1.2-4,10LAB65,"Neural Float & Final Weld Connections to FW Pump",7112,"CCGTD1_IPS",TT_Task,"58385",-,-,-,100,TK_Complete,29/06/2019,27/07/2019,11/07/2019,21/09/2019,"10LAB60 FF","10LAB60","10LAB70 FS,10LAB100 FS","10LAB70,10LAB100",204,245,206,253,47,57,48,59,65,,"CCGT D1_Integrated Programme Schedule;M&E;Construction;M&E Construction;Feedwater;Feedwater (LA);(10LAB) HP/IP Feedwater Supply System",1,2,0.0000038092,0.0036622584,0.0044760936,12,0.0,0.0004540689,0.0068493151,0.0061538462,0.00575,0.0093994778,0.0141570142,0.0269058296,0.0,0.1527664428
1.3.1.1.16.1.2-5,10LAB100,"Insulation of FInal Weld Connections",7112,"CCGTD1_IPS",TT_Task,"58385",-,-,-,100,TK_Complete,31/08/2019,21/09/2019,17/09/2019,14/11/2019,"10LAB65 FS","10LAB65","10LAB90 FS","10LAB90",213,253,215,260,49,59,50,60,70,,"CCGT D1_Integrated Programme Schedule;M&E;Construction;M&E Construction;Feedwater;Feedwater (LA);(10LAB) HP/IP Feedwater Supply System",1,1,0.0000013249,0.0032553408,0.0046795524,17,0.0,0.0003079181,0.0068493151,0.0030769231,0.002,0.0083550914,0.0148005148,0.0381165919,0.0,0.0928814391
1.3.1.1.16.1.2-6,10LAB10,"Install Equipment/Skids/Pumps/",7112,"CCGTD1_IPS",TT_Task,"58385",-,-,-,100,TK_Complete,01/04/2019,01/03/2019,08/05/2019,18/06/2019,"SI1ULA3B25 FS,SI1LAC4-40 FS,KD_D06 FS,10LAC05 FS,KD_H01 FS","SI1ULA3B25,SI1LAC4-40,KD_D06,10LAC05,KD_H01","10LAB20 SS","10LAB20",191,224,197,239,44,52,45,55,50,,"CCGT D1_Integrated Programme Schedule;M&E;Construction;M&E Construction;Feedwater;Feedwater (LA);(10LAB) HP/IP Feedwater Supply System",5,1,0.0000032088,0.0069175992,0.0016276704,37,0.0,0.0002425359,0.0342465753,0.0030769231,0.00484375,0.0177545692,0.0051480051,0.0829596413,0.0,0.0660912197
1.3.1.1.16.1.2-7,10LAB30,"Install Small Bore Pipe/Valves/Supports",7112,"CCGTD1_IPS",TT_Task,"58385",-,-,-,100,TK_Complete,14/05/2019,14/05/2019,22/06/2019,20/07/2019,"SI1--P4A40 FS,10LAB20 FS,SI1--P4H40 FS","SI1--P4A40,10LAB20,SI1--P4H40","10LAB80 FF,10LAB40 FF,10LAB50 SS","10LAB80,10LAB40,10LAB50",197,234,203,244,46,54,47,56,58,,"CCGT D1_Integrated Programme Schedule;M&E;Construction;M&E Construction;Feedwater;Feedwater (LA);(10LAB) HP/IP Feedwater Supply System",3,3,0.0000052583,0.0046795524,0.0036622584,39,0.0,0.000167585,0.0205479452,0.0092307692,0.0079375,0.0120104439,0.0115830116,0.0874439462,0.0,0.0353802276
1.3.1.1.16.1.2-8,10LAB40,"NDE",7112,"CCGTD1_IPS",TT_Task,"58385",-,-,-,100,TK_Complete,04/05/2019,04/05/2019,22/06/2019,21/09/2019,"10LAB30 FF,10LAB20 SS","10LAB30,10LAB20","10LAB60 FF","10LAB60",196,233,203,253,45,54,47,59,57,,"CCGT D1_Integrated Programme Schedule;M&E;Construction;M&E Construction;Feedwater;Feedwater (LA);(10LAB) HP/IP Feedwater Supply System",2,1,0.0000015733,0.004069176,0.0038657172,49,0.0,0.0002508015,0.0136986301,0.0030769231,0.002375,0.0104438642,0.0122265122,0.1098654709,0.0,0.069478026
1.3.1.1.16.1.2-9,10LAB60,"Line Inspection & Preparation for Neutral Float Welds",7112,"CCGTD1_IPS",TT_Task,"58385",-,-,-,100,TK_Complete,10/06/2019,18/06/2019,21/06/2019,27/07/2019,"10LAB80 FF,10LAB40 FF","10LAB80,10LAB40","10LAB65 FF","10LAB65",201,239,203,245,47,55,47,57,62,,"CCGT D1_Integrated Programme Schedule;M&E;Construction;M&E Construction;Feedwater;Feedwater (LA);(10LAB) HP/IP Feedwater Supply System",2,1,0.0000039334,0.0038657172,0.0042726348,11,0.0,0.0004377303,0.0136986301,0.0030769231,0.0059375,0.009921671,0.0135135135,0.0246636771,0.0,0.1460717405
1.3.1.1.16.1.2-10,10LAB70,"Hydro Test",7112,"CCGTD1_IPS",TT_Task,"58385",-,-,-,100,TK_Complete,30/09/2019,02/10/2019,12/10/2019,08/10/2019,"10LAB65 FS","10LAB65","10LAB90 FS","10LAB90",217,254,219,255,50,59,51,59,77,,"CCGT D1_Integrated Programme Schedule;M&E;Construction;M&E Construction;Feedwater;Feedwater (LA);(10LAB) HP/IP Feedwater Supply System",1,1,0.0000013249,0.0032553408,0.0046795524,12,1.0,0.0002412477,0.0068493151,0.0030769231,0.002,0.0083550914,0.0148005148,0.0269058296,1.0,0.0655633687
1.3.1.1.16.1.2-11,10LAB90,"Pre-Commissioning/Flushing/Cleaning",7112,"CCGTD1_IPS",TT_Task,"58385",-,-,-,100,TK_Complete,14/10/2019,03/10/2019,24/10/2019,14/11/2019,"10LAB70 FS,10LAB100 FS,10LAB50 FF","10LAB70,10LAB100,10LAB50","TOP1930 FS","TOP1930",219,254,221,260,51,59,51,60,79,,"CCGT D1_Integrated Programme Schedule;M&E;Construction;M&E Construction;Feedwater;Feedwater (LA);(10LAB) HP/IP Feedwater Supply System",3,1,0.0000083636,0.003051882,0.0052899288,10,0.0,0.0006579491,0.0205479452,0.0030769231,0.012625,0.0078328982,0.0167310167,0.0224215247,0.0,0.2363059668
1.3.1.1.16.1.3,58384,"(10LAC) Feedwater Pump",7112,"CCGTD1_IPS",WBS,"58383",,,,100,Complete,11/02/2019,29/01/2019,17/10/2019,14/11/2019,,,,,184,219,220,260,43,51,51,60,,,"CCGT D1_Integrated Programme Schedule;M&E;Construction;M&E Construction;Feedwater;Feedwater (LA)"
1.3.1.1.16.1.3-1,10LAC10,"Install Feedwater Pump Skid (LAC10Y)",7112,"CCGTD1_IPS",TT_Task,"58384",-,-,-,100,TK_Complete,15/02/2019,15/02/2019,28/02/2019,08/05/2019,"SI0ACA4-55 FS,SI1ULA3B25 FS,SI1LAC4-40 FS,10LAC05 FS","SI0ACA4-55,SI1ULA3B25,SI1LAC4-40,10LAC05","10LAC20 FS,10LAB20 FS","10LAC20,10LAB20",185,222,187,233,43,51,43,54,47,,"CCGT D1_Integrated Programme Schedule;M&E;Construction;M&E Construction;Feedwater;Feedwater (LA);(10LAC) Feedwater Pump",4,2,0.000005693,0.0093591048,0.0018311292,13,0.0,0.0001965452,0.0273972603,0.0061538462,0.00859375,0.0240208877,0.0057915058,0.0291479821,0.0,0.0472466084
1.3.1.1.16.1.3-2,10LAC05,"Preparation of Feed Water Pump Foundations",7112,"CCGTD1_IPS",TT_Task,"58384",-,-,-,100,TK_Complete,11/02/2019,29/01/2019,14/02/2019,07/02/2019,"KD_D06 FS,KD_D05 FS,HRS10.1080 FS,KD_H01 FS","KD_D06,KD_D05,HRS10.1080,KD_H01","10LAC20 FS,10LAC10 FS,10LAB10 FS","10LAC20,10LAC10,10LAB10",184,219,185,220,43,51,43,51,47,,"CCGT D1_Integrated Programme Schedule;M&E;Construction;M&E Construction;Feedwater;Feedwater (LA);(10LAC) Feedwater Pump",4,3,0.0000029811,0.0097660224,0.001017294,3,0.2,0.0000939048,0.0273972603,0.0092307692,0.0045,0.0250652742,0.0032175032,0.0067264574,0.2,0.0051899109
1.3.1.1.16.1.3-3,10LAC20,"Install Large Bore Pipe/Valves/Supports",7112,"CCGTD1_IPS",TT_Task,"58384",-,-,-,100,TK_Complete,13/04/2019,13/04/2019,04/06/2019,20/07/2019,"10LAC05 FS,PMS14.1050 FS,SI1--P4A40 FS,10LAC10 FS,SI1--P4H40 FS,SI---P4I40 FS","10LAC05,PMS14.1050,SI1--P4A40,10LAC10,SI1--P4H40,SI---P4I40","10LAC50 FS,10LAC30 FS,10LAC40 SS,CP-BZK7H25 FS","10LAC50,10LAC30,10LAC40,CP-BZK7H25",193,230,200,244,45,53,46,56,54,,"CCGT D1_Integrated Programme Schedule;M&E;Construction;M&E Construction;Feedwater;Feedwater (LA);(10LAC) Feedwater Pump",6,4,0.0000086375,0.0042726348,0.0032553408,52,0.0,0.0003266279,0.0410958904,0.0123076923,0.0130385417,0.0109660574,0.0102960103,0.1165919283,0.0,0.1005477461
1.3.1.1.16.1.3-4,10LAC50,"EC+I",7112,"CCGTD1_IPS",TT_Task,"58384",-,-,-,100,TK_Complete,10/06/2019,22/05/2019,16/07/2019,21/09/2019,"10LAC20 FS","10LAC20","10LAC90 FS","10LAC90",201,235,206,253,47,55,48,59,62,,"CCGT D1_Integrated Programme Schedule;M&E;Construction;M&E Construction;Feedwater;Feedwater (LA);(10LAC) Feedwater Pump",1,1,0.0000010282,0.0024415056,0.0034587996,36,0.0,0.0001381175,0.0068493151,0.0030769231,0.0015520833,0.0062663185,0.0109395109,0.0807174888,0.0,0.023305962
1.3.1.1.16.1.3-5,10LAC30,"Install Small Bore Pipe/Valves/Supports",7112,"CCGTD1_IPS",TT_Task,"58384",-,-,-,100,TK_Complete,23/05/2019,20/05/2019,05/07/2019,20/07/2019,"SI1--P4A40 FS,10LAC20 FS,SI1--P4H40 FS","SI1--P4A40,10LAC20,SI1--P4H40","10LAC40 FF,10LAC80 FS,10LAC60 FS","10LAC40,10LAC80,10LAC60",199,235,205,244,46,54,47,56,59,,"CCGT D1_Integrated Programme Schedule;M&E;Construction;M&E Construction;Feedwater;Feedwater (LA);(10LAC) Feedwater Pump",3,3,0.0000016182,0.0032553408,0.0034587996,43,0.0,0.0001513739,0.0205479452,0.0092307692,0.0024427083,0.0083550914,0.0109395109,0.0964125561,0.0,0.0287377611
1.3.1.1.16.1.3-6,10LAC40,"NDE",7112,"CCGTD1_IPS",TT_Task,"58384",-,-,-,100,TK_Complete,16/05/2019,16/05/2019,05/07/2019,20/09/2019,"10LAC30 FF,10LAC20 SS","10LAC30,10LAC20","10LAC70 FF","10LAC70",198,234,205,253,46,54,47,59,58,,"CCGT D1_Integrated Programme Schedule;M&E;Construction;M&E Construction;Feedwater;Feedwater (LA);(10LAC) Feedwater Pump",2,1,0.0000006625,0.0026449644,0.0036622584,50,0.0,0.000243941,0.0136986301,0.0030769231,0.001,0.0067885117,0.0115830116,0.1121076233,0.0,0.0666669469
1.3.1.1.16.1.3-7,10LAC60,"Line Inspection",7112,"CCGTD1_IPS",TT_Task,"58384",-,-,-,100,TK_Complete,04/07/2019,27/07/2019,12/07/2019,24/08/2019,"10LAC30 FS","10LAC30","10LAC70 FS","10LAC70",205,245,206,249,47,57,48,58,65,,"CCGT D1_Integrated Programme Schedule;M&E;Construction;M&E Construction;Feedwater;Feedwater (LA);(10LAC) Feedwater Pump",1,1,0.0000000828,0.0026449644,0.0036622584,8,0.0,0.0000946314,0.0068493151,0.0030769231,0.000125,0.0067885117,0.0115830116,0.0179372197,0.0,0.0054876088
1.3.1.1.16.1.3-8,10LAC70,"Hydro Test",7112,"CCGTD1_IPS",TT_Task,"58384",-,-,-,100,TK_Complete,31/08/2019,14/09/2019,07/09/2019,14/09/2019,"10LAC60 FS,10LAC40 FF","10LAC60,10LAC40","10LAC90 FS","10LAC90",213,252,214,252,49,58,50,58,70,,"CCGT D1_Integrated Programme Schedule;M&E;Construction;M&E Construction;Feedwater;Feedwater (LA);(10LAC) Feedwater Pump",2,1,0.0000009937,0.0024415056,0.004069176,7,1.0,0.0003695519,0.0136986301,0.0030769231,0.0015,0.0062663185,0.0128700129,0.0156950673,1.0,0.118135787
1.3.1.1.16.1.3-9,10LAC80,"Painting/Insulation",7112,"CCGTD1_IPS",TT_Task,"58384",-,-,-,100,TK_Complete,27/06/2019,21/06/2019,16/07/2019,14/11/2019,"10LAC30 FS","10LAC30","10LAC90 FF","10LAC90",204,240,206,260,47,56,48,60,64,,"CCGT D1_Integrated Programme Schedule;M&E;Construction;M&E Construction;Feedwater;Feedwater (LA);(10LAC) Feedwater Pump",1,1,0.0000005521,0.0024415056,0.0036622584,19,0.0,0.0001130462,0.0068493151,0.0030769231,0.0008333333,0.0062663185,0.0115830116,0.0426008969,0.0,0.013033071
1.3.1.1.16.1.3-10,10LAC90,"Pre-Commissioning/Flushing/Cleaning",7112,"CCGTD1_IPS",TT_Task,"58384",-,-,-,100,TK_Complete,30/09/2019,03/10/2019,17/10/2019,14/11/2019,"CP-BZK7H25 FS,10LAC50 FS,10LAC70 FS,10LAC80 FF","CP-BZK7H25,10LAC50,10LAC70,10LAC80","TOP1940 FS","TOP1940",217,254,220,260,50,59,51,60,77,,"CCGT D1_Integrated Programme Schedule;M&E;Construction;M&E Construction;Feedwater;Feedwater (LA);(10LAC) Feedwater Pump",4,1,0.0000098876,0.0022380468,0.0199389624,17,0.0,0.000890594,0.0273972603,0.0030769231,0.0149254884,0.0057441253,0.0630630631,0.0381165919,0.0,0.3316317979
1.3.1.1.17,58376,"Generator (MK)",7112,"CCGTD1_IPS",WBS,"58325",,,,100,Complete,30/08/2018,20/08/2018,25/10/2019,20/11/2019,,,,,161,196,221,261,37,45,51,61,,,"CCGT D1_Integrated Programme Schedule;M&E;Construction;M&E Construction"
1.3.1.1.17.1,58381,"(10MKG) H2 Gas Supply System (Power Island)",7112,"CCGTD1_IPS",WBS,"58376",,,,100,Complete,01/11/2018,17/10/2018,18/10/2019,01/11/2019,,,,,170,204,220,259,39,47,51,60,,,"CCGT D1_Integrated Programme Schedule;M&E;Construction;M&E Construction;Generator (MK)"
1.3.1.1.17.1-1,10MKG10,"Install Equipment/Skids/Pumps",7112,"CCGTD1_IPS",TT_Task,"58381",-,-,-,100,TK_Complete,01/11/2018,17/10/2018,12/11/2018,27/10/2018,"SI-MBH4-58 FS,SI1MKA4-25 FS,KD_C17 FS","SI-MBH4-58,SI1MKA4-25,KD_C17","00MBH20 FS,10MKG20 FS","00MBH20,10MKG20",170,204,171,206,39,47,40,48,38,,"CCGT D1_Integrated Programme Schedule;M&E;Construction;M&E Construction;Generator (MK);(10MKG) H2 Gas Supply System (Power Island)",3,2,0.0000031329,0.0069175992,0.0008138352,11,1.0,0.0001628719,0.0205479452,0.0061538462,0.0047291667,0.0177545692,0.0025740026,0.0246636771,1.0,0.0334490376
1.3.1.1.17.1-2,10MKG20,"Install Large Bore Pipe/Valves/Supports",7112,"CCGTD1_IPS",TT_Task,"58381",-,-,-,100,TK_Complete,01/04/2019,01/11/2018,07/05/2019,10/08/2019,"10MKG10 FS,KD_C17 FS","10MKG10,KD_C17","10MKG50 FS,10MKG30 FF,10MKG40 SS","10MKG50,10MKG30,10MKG40",191,206,196,247,44,48,45,57,50,,"CCGT D1_Integrated Programme Schedule;M&E;Construction;M&E Construction;Generator (MK);(10MKG) H2 Gas Supply System (Power Island)",2,3,0.0000018356,0.0036622584,0.001017294,36,0.0,0.0001654008,0.0136986301,0.0092307692,0.0027708333,0.0093994778,0.0032175032,0.0807174888,0.0,0.0344852632
1.3.1.1.17.1-3,10MKG50,"EC+I",7112,"CCGTD1_IPS",TT_Task,"58381",-,-,-,100,TK_Complete,30/04/2019,17/05/2019,23/05/2019,21/09/2019,"SI-BZK4-58 FS,10MKG20 FS,EDS.1080 SS,EDS.1080 FS,SI-BZK4-25 FS","SI-BZK4-58,10MKG20,EDS.1080,EDS.1080,SI-BZK4-25","10MKG90 FF","10MKG90",195,235,199,253,45,54,46,59,55,,"CCGT D1_Integrated Programme Schedule;M&E;Construction;M&E Construction;Generator (MK);(10MKG) H2 Gas Supply System (Power Island)",4,1,0.0000017597,0.0024415056,0.0018311292,23,0.0,0.0001306492,0.0273972603,0.0030769231,0.00265625,0.0062663185,0.0057915058,0.0515695067,0.0,0.0202458563
1.3.1.1.17.1-4,10MKG30,"Install Small Bore Pipe/Valves/Supports",7112,"CCGTD1_IPS",TT_Task,"58381",-,-,-,100,TK_Complete,08/05/2019,05/11/2018,04/06/2019,10/08/2019,"SI1--P4A40 FS,10MKG20 FF,SI1--P4H40 FS,10MKA1105 FF","SI1--P4A40,10MKG20,SI1--P4H40,10MKA1105","10MKG40 FF,10MKG80 FS","10MKG40,10MKG80",197,207,200,247,45,48,46,57,57,,"CCGT D1_Integrated Programme Schedule;M&E;Construction;M&E Construction;Generator (MK);(10MKG) H2 Gas Supply System (Power Island)",4,2,0.0000209435,0.0032553408,0.0174974568,27,0.0,0.0001500929,0.0273972603,0.0061538462,0.0316145833,0.0083550914,0.0553410553,0.0605381166,0.0,0.0282128618
1.3.1.1.17.1-5,10MKG40,"NDE",7112,"CCGTD1_IPS",TT_Task,"58381",-,-,-,100,TK_Complete,30/04/2019,17/05/2019,24/05/2019,21/09/2019,"10MKG30 FF,10MKG20 SS","10MKG30,10MKG20","10MKG60 FS","10MKG60",195,235,199,253,45,54,46,59,55,,"CCGT D1_Integrated Programme Schedule;M&E;Construction;M&E Construction;Generator (MK);(10MKG) H2 Gas Supply System (Power Island)",2,1,0.0000072043,0.0028484232,0.0177009156,24,0.0,0.0001921586,0.0136986301,0.0030769231,0.010875,0.007310705,0.055984556,0.0538116592,0.0,0.0454492251
1.3.1.1.17.1-6,10MKG60,"Line Inspection",7112,"CCGTD1_IPS",TT_Task,"58381",-,-,-,100,TK_Complete,07/08/2019,05/08/2019,12/08/2019,10/08/2019,"10MKG40 FS","10MKG40","10MKG70 FS","10MKG70",210,246,210,247,49,57,49,57,69,,"CCGT D1_Integrated Programme Schedule;M&E;Construction;M&E Construction;Generator (MK);(10MKG) H2 Gas Supply System (Power Island)",1,1,0.0000041404,0.0026449644,0.0179043744,5,1.0,0.0002448536,0.0068493151,0.0030769231,0.00625,0.0067885117,0.0566280566,0.0112107623,1.0,0.0670408847
1.3.1.1.17.1-7,10MKG70,"Hydro Test",7112,"CCGTD1_IPS",TT_Task,"58381",-,-,-,100,TK_Complete,30/09/2019,12/10/2019,09/10/2019,19/10/2019,"10MKG60 FS","10MKG60","10MKG90 FS","10MKG90",217,256,219,257,50,59,51,60,77,,"CCGT D1_Integrated Programme Schedule;M&E;Construction;M&E Construction;Generator (MK);(10MKG) H2 Gas Supply System (Power Island)",1,1,0.0000009937,0.0024415056,0.0181078332,9,1.0,0.0002897457,0.0068493151,0.0030769231,0.0015,0.0062663185,0.0572715573,0.0201793722,1.0,0.0854353544
1.3.1.1.17.1-8,10MKG80,"Painting/Insulation",7112,"CCGTD1_IPS",TT_Task,"58381",-,-,-,100,TK_Complete,04/07/2019,24/07/2019,27/07/2019,01/11/2019,"10MKG30 FS","10MKG30","10MKG90 FF","10MKG90",205,244,208,259,47,57,48,60,65,,"CCGT D1_Integrated Programme Schedule;M&E;Construction;M&E Construction;Generator (MK);(10MKG) H2 Gas Supply System (Power Island)",1,1,0.0000078184,0.0024415056,0.0177009156,23,0.0,0.0001437706,0.0068493151,0.0030769231,0.0118020833,0.0062663185,0.055984556,0.0515695067,0.0,0.0256223039
1.3.1.1.17.1-9,10MKG90,"Pre-Commissioning/Flushing/Cleaning",7112,"CCGTD1_IPS",TT_Task,"58381",-,-,-,100,TK_Complete,10/10/2019,14/10/2019,18/10/2019,01/11/2019,"10MKG80 FF,10MKG50 FF,10MKG70 FS","10MKG80,10MKG50,10MKG70","TOP1220 FS","TOP1220",219,256,220,259,51,59,51,60,79,,"CCGT D1_Integrated Programme Schedule;M&E;Construction;M&E Construction;Generator (MK);(10MKG) H2 Gas Supply System (Power Island)",3,1,0.000008129,0.0022380468,0.019328586,8,0.0,0.000561635,0.0205479452,0.0030769231,0.0122708333,0.0057441253,0.0611325611,0.0179372197,0.0,0.1968414468
1.3.1.1.17.2,58380,"(10MKQ) Waste Gas System",7112,"CCGTD1_IPS",WBS,"58376",,,,100,Complete,14/03/2019,07/01/2019,12/10/2019,12/10/2019,,,,,189,216,219,256,44,50,51,59,,,"CCGT D1_Integrated Programme Schedule;M&E;Construction;M&E Construction;Generator (MK)"
1.3.1.1.17.2-1,10MKQ10,"Install Equipment/Skids/Pumps",7112,"CCGTD1_IPS",TT_Task,"58380",-,-,-,100,TK_Complete,01/04/2019,08/04/2019,09/04/2019,11/06/2019,"SI1MKA4-25 FS,Sub-GTST-180 FS,10MKA1100 FS","SI1MKA4-25,Sub-GTST-180,10MKA1100","10MKQ20 FF","10MKQ20",191,229,192,238,44,53,45,55,50,,"CCGT D1_Integrated Programme Schedule;M&E;Construction;M&E Construction;Generator (MK);(10MKQ) Waste Gas System",3,1,0.0000056861,0.0036622584,0.0089521872,8,0.0,0.0001617968,0.0205479452,0.0030769231,0.0085833333,0.0093994778,0.0283140283,0.0179372197,0.0,0.033008518
1.3.1.1.17.2-2,10MKQ20,"Install Large Bore Pipe/Valves/Supports",7112,"CCGTD1_IPS",TT_Task,"58380",-,-,-,100,TK_Complete,14/03/2019,07/01/2019,06/04/2019,28/08/2019,"10MKQ10 FF,SI1--P4H40 FS,10MKA1105 FF,SI1--P4A40 FS,PMS14.1020 FS","10MKQ10,SI1--P4H40,10MKA1105,SI1--P4A40,PMS14.1020","10MKQ50 FS,10MKQ30 FS","10MKQ50,10MKQ30",189,216,192,249,44,50,44,58,48,,"CCGT D1_Integrated Programme Schedule;M&E;Construction;M&E Construction;Generator (MK);(10MKQ) Waste Gas System",5,2,0.0000269526,0.0034587996,0.0181078332,23,0.0,0.000246049,0.0342465753,0.0061538462,0.0406854167,0.0088772846,0.0572715573,0.0515695067,0.0,0.0675307177
1.3.1.1.17.2-3,10MKQ50,"EC+I",7112,"CCGTD1_IPS",TT_Task,"58380",-,-,-,100,TK_Complete,24/04/2019,24/04/2019,08/05/2019,21/09/2019,"EDS.1090 FS,EDS.1080 FS,10MKQ30 FF,SI-CP-4-40 FS,SI-C-4C40 FS,10MKQ20 FS,SI-BZK4-25 FS,SI-BZK4-58 FS","EDS.1090,EDS.1080,10MKQ30,SI-CP-4-40,SI-C-4C40,10MKQ20,SI-BZK4-25,SI-BZK4-58","10MKQ90 FS","10MKQ90",195,231,197,253,45,54,45,59,55,,"CCGT D1_Integrated Programme Schedule;M&E;Construction;M&E Construction;Generator (MK);(10MKQ) Waste Gas System",8,1,0.00001095,0.0024415056,0.0197355036,14,0.0,0.0002682539,0.0547945205,0.0030769231,0.0165291667,0.0062663185,0.0624195624,0.0313901345,0.0,0.0766291073
1.3.1.1.17.2-4,10MKQ30,"Install Small Bore Pipe/Valves/Supports",7112,"CCGTD1_IPS",TT_Task,"58380",-,-,-,100,TK_Complete,25/04/2019,20/03/2019,20/05/2019,28/08/2019,"SI1--P4H40 FS,10MKQ20 FS,SI1--P4A40 FS","SI1--P4H40,10MKQ20,SI1--P4A40","10MKQ50 FF,10MKQ40 FS","10MKQ50,10MKQ40",195,226,198,249,45,52,46,58,55,,"CCGT D1_Integrated Programme Schedule;M&E;Construction;M&E Construction;Generator (MK);(10MKQ) Waste Gas System",3,2,0.0000113171,0.0032553408,0.018311292,25,0.0,0.0002167939,0.0205479452,0.0061538462,0.0170833333,0.0083550914,0.0579150579,0.0560538117,0.0,0.055543486
1.3.1.1.17.2-5,10MKQ40,"NDE",7112,"CCGTD1_IPS",TT_Task,"58380",-,-,-,100,TK_Complete,09/04/2019,09/04/2019,20/04/2019,19/09/2019,"10MKQ30 FS","10MKQ30","10MKQ60 FS","10MKQ60",192,229,194,252,45,53,45,59,53,,"CCGT D1_Integrated Programme Schedule;M&E;Construction;M&E Construction;Generator (MK);(10MKQ) Waste Gas System",1,1,0.0000075355,0.0028484232,0.0185147508,11,0.0,0.0001624733,0.0068493151,0.0030769231,0.011375,0.007310705,0.0585585586,0.0246636771,0.0,0.0332857146
1.3.1.1.17.2-6,10MKQ60,"Line Inspection",7112,"CCGTD1_IPS",TT_Task,"58380",-,-,-,100,TK_Complete,31/08/2019,07/09/2019,09/09/2019,17/09/2019,"10MKQ40 FS","10MKQ40","10MKQ70 FS","10MKQ70",213,251,214,252,49,58,50,58,70,,"CCGT D1_Integrated Programme Schedule;M&E;Construction;M&E Construction;Generator (MK);(10MKQ) Waste Gas System",1,1,0.000004306,0.0026449644,0.0187182096,9,0.8,0.0002196045,0.0068493151,0.0030769231,0.0065,0.0067885117,0.0592020592,0.0201793722,0.8,0.056695136
1.3.1.1.17.2-7,10MKQ70,"Hydro Test",7112,"CCGTD1_IPS",TT_Task,"58380",-,-,-,100,TK_Complete,30/09/2019,05/10/2019,05/10/2019,11/10/2019,"10MKQ60 FS","10MKQ60","10MKQ90 FS","10MKQ90",217,255,218,256,50,59,50,59,77,,"CCGT D1_Integrated Programme Schedule;M&E;Construction;M&E Construction;Generator (MK);(10MKQ) Waste Gas System",1,1,0.0000009937,0.0024415056,0.0189216684,5,1.0,0.000268216,0.0068493151,0.0030769231,0.0015,0.0062663185,0.0598455598,0.0112107623,1.0,0.0766136025
1.3.1.1.17.2-8,10MKQ90,"Pre-Commissioning/Flushing/Cleaning",7112,"CCGTD1_IPS",TT_Task,"58380",-,-,-,100,TK_Complete,08/10/2019,07/10/2019,12/10/2019,12/10/2019,"10MKQ70 FS,10MKQ50 FS","10MKQ70,10MKQ50","TOP1230 FS","TOP1230",218,255,219,256,51,59,51,59,79,,"CCGT D1_Integrated Programme Schedule;M&E;Construction;M&E Construction;Generator (MK);(10MKQ) Waste Gas System",2,1,0.0000087555,0.0022380468,0.0205493388,4,1.0,0.000538086,0.0136986301,0.0030769231,0.0132166667,0.0057441253,0.064993565,0.0089686099,1.0,0.1871922889
1.3.1.1.17.3,58379,"(10MKF) Generator Primary Water Cooling System",7112,"CCGTD1_IPS",WBS,"58376",,,,100,Complete,31/10/2018,02/10/2018,25/10/2019,20/11/2019,,,,,170,202,221,261,39,47,51,61,,,"CCGT D1_Integrated Programme Schedule;M&E;Construction;M&E Construction;Generator (MK)"
1.3.1.1.17.3-1,10MKF10,"Install Equipment/Skids/Pumps",7112,"CCGTD1_IPS",TT_Task,"58379",-,-,-,100,TK_Complete,31/10/2018,02/10/2018,07/11/2018,10/10/2018,"SI1MKA4E25 SS,KD_C04 FS,SI1MKA4E25 FS,Sub-GTST-180 FS","SI1MKA4E25,KD_C04,SI1MKA4E25,Sub-GTST-180","10MKF20 FS","10MKF20",170,202,171,203,39,47,39,47,38,,"CCGT D1_Integrated Programme Schedule;M&E;Construction;M&E Construction;Generator (MK);(10MKF) Generator Primary Water Cooling System",3,1,0.0000114275,0.0052899288,0.0034587996,7,1.0,0.0001227172,0.0205479452,0.0030769231,0.01725,0.0135770235,0.0109395109,0.0156950673,1.0,0.0169957341
1.3.1.1.17.3-2,10MKF20,"Install Large Bore Pipe/Valves/Supports",7112,"CCGTD1_IPS",TT_Task,"58379",-,-,-,100,TK_Complete,31/01/2019,15/10/2018,16/03/2019,26/05/2019,"10MKF10 FS,PMS14.1020 SS,10MKA1105 FF,SI1--P4A40 FS,SI1--P4H40 SS,KD_D11 FF","10MKF10,PMS14.1020,10MKA1105,SI1--P4A40,SI1--P4H40,KD_D11","10MKF30 FS,10MKF50 FS,10MKF80 FS","10MKF30,10MKF50,10MKF80",183,204,189,236,42,47,44,55,46,,"CCGT D1_Integrated Programme Schedule;M&E;Construction;M&E Construction;Generator (MK);(10MKF) Generator Primary Water Cooling System",6,3,0.0000546449,0.00508647,0.0174974568,44,0.0,0.0002518273,0.0410958904,0.0092307692,0.0824875,0.0130548303,0.0553410553,0.0986547085,0.0,0.0698983506
1.3.1.1.17.3-3,10MKF50,"EC+I",7112,"CCGTD1_IPS",TT_Task,"58379",-,-,-,100,TK_Complete,25/06/2019,17/05/2019,23/07/2019,18/09/2019,"EDS.1080 SF,SI-BZK4-25 FS,SI1C--4-25 FS,SI-BZK4-58 FS,EDS.1080 FS,EDS.1080 SS,10MKF20 FS","EDS.1080,SI-BZK4-25,SI1C--4-25,SI-BZK4-58,EDS.1080,EDS.1080,10MKF20","10MKF90 FS","10MKF90",203,235,207,252,47,54,48,58,64,,"CCGT D1_Integrated Programme Schedule;M&E;Construction;M&E Construction;Generator (MK);(10MKF) Generator Primary Water Cooling System",5,1,0.0000192349,0.0038657172,0.0185147508,28,0.0,0.0001703803,0.0342465753,0.0030769231,0.0290354167,0.009921671,0.0585585586,0.0627802691,0.0,0.0365256018
1.3.1.1.17.3-4,10MKF30,"Install Small Bore Pipe/Valves/Supports",7112,"CCGTD1_IPS",TT_Task,"58379",-,-,-,100,TK_Complete,07/05/2019,20/03/2019,06/06/2019,20/07/2019,"SI1--P4H40 FS,10MKF20 FS,SI1--P4A40 FS","SI1--P4H40,10MKF20,SI1--P4A40","10MKF40 FS","10MKF40",196,226,201,244,45,52,46,56,57,,"CCGT D1_Integrated Programme Schedule;M&E;Construction;M&E Construction;Generator (MK);(10MKF) Generator Primary Water Cooling System",3,1,0.0000108064,0.0044760936,0.0177009156,30,0.0,0.0001652185,0.0205479452,0.0030769231,0.0163125,0.0114882507,0.055984556,0.067264574,0.0,0.0344105721
1.3.1.1.17.3-5,10MKF40,"NDE",7112,"CCGTD1_IPS",TT_Task,"58379",-,-,-,100,TK_Complete,01/06/2019,22/05/2019,06/07/2019,20/09/2019,"10MKF30 FS","10MKF30","10MKF60 FS","10MKF60",200,235,205,253,46,55,47,59,60,,"CCGT D1_Integrated Programme Schedule;M&E;Construction;M&E Construction;Generator (MK);(10MKF) Generator Primary Water Cooling System",1,1,0.0000080738,0.0042726348,0.0179043744,35,0.0,0.0002219234,0.0068493151,0.0030769231,0.0121875,0.0109660574,0.0566280566,0.0784753363,0.0,0.0576452854
1.3.1.1.17.3-6,10MKF60,"Line Inspection",7112,"CCGTD1_IPS",TT_Task,"58379",-,-,-,100,TK_Complete,19/08/2019,10/08/2019,24/08/2019,17/08/2019,"10MKF40 FS","10MKF40","10MKF70 FS","10MKF70",211,247,212,248,49,57,49,57,70,,"CCGT D1_Integrated Programme Schedule;M&E;Construction;M&E Construction;Generator (MK);(10MKF) Generator Primary Water Cooling System",1,1,0.0000052583,0.004069176,0.0181078332,5,0.8,0.0002702219,0.0068493151,0.0030769231,0.0079375,0.0104438642,0.0572715573,0.0112107623,0.8,0.0774355195
1.3.1.1.17.3-7,10MKF70,"Hydro Test",7112,"CCGTD1_IPS",TT_Task,"58379",-,-,-,100,TK_Complete,15/10/2019,05/10/2019,18/10/2019,12/10/2019,"10MKF60 FS","10MKF60","10MKF90 FS","10MKF90",219,255,220,256,51,59,51,59,79,,"CCGT D1_Integrated Programme Schedule;M&E;Construction;M&E Construction;Generator (MK);(10MKF) Generator Primary Water Cooling System",1,1,0.00000236,0.0038657172,0.018311292,3,0.4,0.0003113635,0.0068493151,0.0030769231,0.0035625,0.009921671,0.0579150579,0.0067264574,0.4,0.0942932066
1.3.1.1.17.3-8,10MKF80,"Painting/Insulation",7112,"CCGTD1_IPS",TT_Task,"58379",-,-,-,100,TK_Complete,13/06/2019,27/06/2019,03/07/2019,28/10/2019,"10MKF20 FS","10MKF20","10MKF90 FS","10MKF90",202,240,205,258,47,56,47,60,63,,"CCGT D1_Integrated Programme Schedule;M&E;Construction;M&E Construction;Generator (MK);(10MKF) Generator Primary Water Cooling System",1,1,0.0000173027,0.0038657172,0.0177009156,20,0.0,0.0001362036,0.0068493151,0.0030769231,0.02611875,0.009921671,0.055984556,0.0448430493,0.0,0.0225217375
1.3.1.1.17.3-9,10MKF90,"Pre-Commissioning/Flushing/Cleaning",7112,"CCGTD1_IPS",TT_Task,"58379",-,-,-,100,TK_Complete,22/10/2019,28/10/2019,25/10/2019,20/11/2019,"10MKF50 FS,10MKF80 FS,10MKF70 FS","10MKF50,10MKF80,10MKF70","TOP1210 FS","TOP1210",220,258,221,261,51,60,51,61,80,,"CCGT D1_Integrated Programme Schedule;M&E;Construction;M&E Construction;Generator (MK);(10MKF) Generator Primary Water Cooling System",3,1,0.0000372414,0.0036622584,0.0197355036,3,0.0,0.0006074328,0.0205479452,0.0030769231,0.0562166667,0.0093994778,0.0624195624,0.0067264574,0.0,0.2156070225
1.3.1.1.17.4,58378,"(10MKW) Seal Oil Supply System",7112,"CCGTD1_IPS",WBS,"58376",,,,100,Complete,15/12/2018,15/10/2018,16/10/2019,05/10/2019,,,,,176,204,220,255,41,47,51,59,,,"CCGT D1_Integrated Programme Schedule;M&E;Construction;M&E Construction;Generator (MK)"
1.3.1.1.17.4-1,10MKW10,"Install Equipment/Skids/Pumps",7112,"CCGTD1_IPS",TT_Task,"58378",-,-,-,100,TK_Complete,15/12/2018,19/10/2018,24/12/2018,26/10/2018,"Sub-GTST-180 FS,SI1MKA4-25 FS,KD_C04 FS,10MKA1030 FS,10MA-1230 FS,10MKA1050 FS,10MKA1030 SS,10MKA1010 FS","Sub-GTST-180,SI1MKA4-25,KD_C04,10MKA1030,10MA-1230,10MKA1050,10MKA1030,10MKA1010","10MKW20 FS","10MKW20",176,205,177,206,41,47,41,48,42,,"CCGT D1_Integrated Programme Schedule;M&E;Construction;M&E Construction;Generator (MK);(10MKW) Seal Oil Supply System",7,1,0.0000188388,0.00508647,0.0079348932,9,1.0,0.0003920914,0.0479452055,0.0030769231,0.0284375,0.0130548303,0.0250965251,0.0201793722,1.0,0.1273712979
1.3.1.1.17.4-2,10MKW20,"Install Large Bore Pipe/Valves/Supports",7112,"CCGTD1_IPS",TT_Task,"58378",-,-,-,100,TK_Complete,06/03/2019,15/10/2018,28/03/2019,23/05/2019,"10MKA1105 FF,10MKW10 FS","10MKA1105,10MKW10","10MKW50 FS,10MKW30 FS","10MKW50,10MKW30",188,204,191,235,43,47,44,55,48,,"CCGT D1_Integrated Programme Schedule;M&E;Construction;M&E Construction;Generator (MK);(10MKW) Seal Oil Supply System",2,2,0.000032088,0.0048830112,0.0164801628,22,0.0,0.0004283157,0.0136986301,0.0061538462,0.0484375,0.0125326371,0.0521235521,0.0493273543,0.0,0.1422141435
1.3.1.1.17.4-3,10MKW50,"EC+I",7112,"CCGTD1_IPS",TT_Task,"58378",-,-,-,100,TK_Complete,13/04/2019,13/04/2019,26/04/2019,07/08/2019,"10MKW20 FS,10MKW30 SS,SI-BZK4-25 FS,SI-BZK4-58 FS,EDS.1080 FS","10MKW20,10MKW30,SI-BZK4-25,SI-BZK4-58,EDS.1080","10MKW90 FS","10MKW90",193,230,195,246,45,53,45,57,54,,"CCGT D1_Integrated Programme Schedule;M&E;Construction;M&E Construction;Generator (MK);(10MKW) Seal Oil Supply System",5,1,0.000017783,0.0038657172,0.0174974568,13,0.0,0.0003439001,0.0342465753,0.0030769231,0.02684375,0.009921671,0.0553410553,0.0291479821,0.0,0.1076249867
1.3.1.1.17.4-4,10MKW30,"Install Small Bore Pipe/Valves/Supports",7112,"CCGTD1_IPS",TT_Task,"58378",-,-,-,100,TK_Complete,16/04/2019,20/03/2019,10/05/2019,13/04/2019,"10MKW20 FS","10MKW20","10MKW50 SS,10MKW40 FF","10MKW50,10MKW40",193,226,197,230,45,52,46,53,54,,"CCGT D1_Integrated Programme Schedule;M&E;Construction;M&E Construction;Generator (MK);(10MKW) Seal Oil Supply System",1,2,0.0000101854,0.0046795524,0.0166836216,24,1.0,0.0003180678,0.0068493151,0.0061538462,0.015375,0.0120104439,0.0527670528,0.0538116592,1.0,0.0970402617
1.3.1.1.17.4-5,10MKW40,"NDE",7112,"CCGTD1_IPS",TT_Task,"58378",-,-,-,100,TK_Complete,30/04/2019,11/04/2019,14/05/2019,23/05/2019,"10MKW30 FF","10MKW30","10MKW60 FS","10MKW60",195,229,197,235,45,53,46,55,55,,"CCGT D1_Integrated Programme Schedule;M&E;Construction;M&E Construction;Generator (MK);(10MKW) Seal Oil Supply System",1,1,0.0000071008,0.0042726348,0.0168870804,14,0.0,0.000222519,0.0068493151,0.0030769231,0.01071875,0.0109660574,0.0534105534,0.0313901345,0.0,0.0578893108
1.3.1.1.17.4-6,10MKW60,"Line Inspection",7112,"CCGTD1_IPS",TT_Task,"58378",-,-,-,100,TK_Complete,31/05/2019,03/06/2019,03/06/2019,29/06/2019,"10MKW40 FS","10MKW40","10MKW70 FS","10MKW70",200,237,200,241,46,55,46,56,60,,"CCGT D1_Integrated Programme Schedule;M&E;Construction;M&E Construction;Generator (MK);(10MKW) Seal Oil Supply System",1,1,0.0000044923,0.004069176,0.0170905392,3,0.0,0.0002709138,0.0068493151,0.0030769231,0.00678125,0.0104438642,0.0540540541,0.0067264574,0.0,0.077719009
1.3.1.1.17.4-7,10MKW70,"Hydro Test",7112,"CCGTD1_IPS",TT_Task,"58378",-,-,-,100,TK_Complete,31/07/2019,03/08/2019,05/08/2019,17/08/2019,"10MKW60 FS","10MKW60","10MKW90 FS,TOP1240 FS","10MKW90,TOP1240",209,246,209,248,48,57,48,57,67,,"CCGT D1_Integrated Programme Schedule;M&E;Construction;M&E Construction;Generator (MK);(10MKW) Seal Oil Supply System",1,2,0.0000018011,0.0038657172,0.017293998,5,0.4,0.0003159885,0.0068493151,0.0061538462,0.00271875,0.009921671,0.0546975547,0.0112107623,0.4,0.0961882644
1.3.1.1.17.4-8,10MKW80,"Painting/Insulation",7112,"CCGTD1_IPS",TT_Task,"58378",-,-,-,100,TK_Complete,12/06/2019,13/05/2019,21/06/2019,26/08/2019,"10MKW90 FS","10MKW90","TOP1240 FS","TOP1240",202,234,203,249,47,54,47,58,62,,"CCGT D1_Integrated Programme Schedule;M&E;Construction;M&E Construction;Generator (MK);(10MKW) Seal Oil Supply System",1,1,0.000005486,0.0022380468,0.0185147508,9,0.0,0.0004604181,0.0068493151,0.0030769231,0.00828125,0.0057441253,0.0585585586,0.0201793722,0.0,0.1553680299
1.3.1.1.17.4-9,10MKW90,"Pre-Commissioning/Flushing/Cleaning",7112,"CCGTD1_IPS",TT_Task,"58378",-,-,-,100,TK_Complete,30/09/2019,30/09/2019,16/10/2019,05/10/2019,"10MKW50 FS,10MKW70 FS","10MKW50,10MKW70","10MKA1250 SS,10MKW80 FS","10MKA1250,10MKW80",217,254,220,255,50,59,51,59,77,,"CCGT D1_Integrated Programme Schedule;M&E;Construction;M&E Construction;Generator (MK);(10MKW) Seal Oil Supply System",2,2,0.000015837,0.0036622584,0.018311292,16,1.0,0.0006448157,0.0136986301,0.0061538462,0.02390625,0.0093994778,0.0579150579,0.0358744395,1.0,0.2309246071
1.3.1.1.17.5,58377,"(10MKA) Generator Incl. Bearing System 10 MKD",7112,"CCGTD1_IPS",WBS,"58376",,,,100,Complete,30/08/2018,20/08/2018,16/10/2019,25/10/2019,,,,,161,196,220,258,37,45,51,60,,,"CCGT D1_Integrated Programme Schedule;M&E;Construction;M&E Construction;Generator (MK)"
1.3.1.1.17.5-1,10MKA1000,"Set Up Equipment on Site",7112,"CCGTD1_IPS",TT_Task,"58377",-,-,-,100,TK_Complete,29/09/2018,20/08/2018,08/10/2018,22/08/2018,"SI1MKA4-25 FS,Sub-GTST-180 FS,KD_C04 FS","SI1MKA4-25,Sub-GTST-180,KD_C04","10MKA1020 FS","10MKA1020",165,196,166,196,38,45,38,45,37,,"CCGT D1_Integrated Programme Schedule;M&E;Construction;M&E Construction;Generator (MK);(10MKA) Generator Incl. Bearing System 10 MKD",3,1,0.0000227721,0.024415056,0.0034587996,9,1.0,0.00009598,0.0205479452,0.0030769231,0.034375,0.0626631854,0.0109395109,0.0201793722,1.0,0.0060402216
1.3.1.1.17.5-2,10MKA1020,"Prepare Generator and Lower onto Foundation",7112,"CCGTD1_IPS",TT_Task,"58377",-,-,-,100,TK_Complete,23/10/2018,22/09/2018,29/10/2018,24/09/2018,"10MKA1010 FS,KD_B06 FS,SI1MKA4E25 FS,10MKA1000 FS","10MKA1010,KD_B06,SI1MKA4E25,10MKA1000","10MKA1030 FS,10MKA1050 FS","10MKA1030,10MKA1050",168,201,169,201,39,46,39,47,37,,"CCGT D1_Integrated Programme Schedule;M&E;Construction;M&E Construction;Generator (MK);(10MKA) Generator Incl. Bearing System 10 MKD",4,2,0.0000317775,0.0242115972,0.007121058,6,1.0,0.0002469532,0.0273972603,0.0061538462,0.04796875,0.0621409922,0.0225225225,0.0134529148,1.0,0.0679012008
1.3.1.1.17.5-3,10MKA1010,"Check and Prep of Foundation",7112,"CCGTD1_IPS",TT_Task,"58377",-,-,-,100,TK_Complete,30/08/2018,22/08/2018,12/09/2018,23/08/2018,"KD_B06 FS,SI1MKA4-25 FS,10MA-1220 SS","KD_B06,SI1MKA4-25,10MA-1220","10MKA1020 FS,10MKA1050 FS,10MKA1070 FS,10MKW10 FS,10MBA1100 FS","10MKA1020,10MKA1050,10MKA1070,10MKW10,10MBA1100",161,196,163,196,37,45,38,45,36,,"CCGT D1_Integrated Programme Schedule;M&E;Construction;M&E Construction;Generator (MK);(10MKA) Generator Incl. Bearing System 10 MKD",3,5,0.0000096264,0.024415056,0.0046795524,13,1.0,0.0003025802,0.0205479452,0.0153846154,0.01453125,0.0626631854,0.0148005148,0.0291479821,1.0,0.0906942612
1.3.1.1.17.5-4,10MKA1070,"Recording the Axial Adjustment of the Shaft System",7112,"CCGTD1_IPS",TT_Task,"58377",-,-,-,100,TK_Complete,31/12/2018,14/01/2019,17/01/2019,28/02/2019,"10MKA1030 FS,10MA-1230 FS,SI1MKA4-25 FS,10MKA1050 FS,10MKA1030 SS,10MKA1010 FS","10MKA1030,10MA-1230,SI1MKA4-25,10MKA1050,10MKA1030,10MKA1010","10MKA1105 FS,10MKA1090 FS,10MKA1080 FS,10MKA1160 FS","10MKA1105,10MKA1090,10MKA1080,10MKA1160",178,217,181,223,41,50,42,52,43,,"CCGT D1_Integrated Programme Schedule;M&E;Construction;M&E Construction;Generator (MK);(10MKA) Generator Incl. Bearing System 10 MKD",5,4,0.0000588902,0.0130213632,0.0079348932,17,0.0,0.0006581075,0.0342465753,0.0123076923,0.0888958333,0.0334203655,0.0250965251,0.0381165919,0.0,0.236370896
1.3.1.1.17.5-5,10MKA1090,"Inspections, Electrical Installations & Tests Begin",7112,"CCGTD1_IPS",TT_FinMile,"58377",-,-,-,100,TK_Complete,12/04/2019,12/04/2019,12/04/2019,12/04/2019,"10MKA1080 FS,10MKA1070 FS","10MKA1080,10MKA1070","10MKA1100 FS,10MKA1095 FS,CP1BZP7A15 FS","10MKA1100,10MKA1095,CP1BZP7A15",193,230,193,230,45,53,45,53,53,,"CCGT D1_Integrated Programme Schedule;M&E;Construction;M&E Construction;Generator (MK);(10MKA) Generator Incl. Bearing System 10 MKD",2,3,0.0000211712,0.0054933876,0.0085452696,0,1.0,0.0000812387,0.0136986301,0.0092307692,0.0319583333,0.0140992167,0.027027027,0.0,1.0,0.0
1.3.1.1.17.5-6,10MKA1120,"Install Isophase Supports",7112,"CCGTD1_IPS",TT_Task,"58377",-,-,-,100,TK_Complete,31/12/2018,03/01/2019,08/01/2019,08/01/2019,"SI1CHA4-10 FS","SI1CHA4-10","10MKA1130 FS","10MKA1130",178,215,179,216,41,50,41,50,43,,"CCGT D1_Integrated Programme Schedule;M&E;Construction;M&E Construction;Generator (MK);(10MKA) Generator Incl. Bearing System 10 MKD",1,1,0.0000002484,0.012207528,0.0004069176,8,1.0,0.000098528,0.0068493151,0.0030769231,0.000375,0.0313315927,0.0012870013,0.0179372197,1.0,0.0070842393
1.3.1.1.17.5-7,10MKA1130,"Install Bushings",7112,"CCGTD1_IPS",TT_Task,"58377",-,-,-,100,TK_Complete,09/01/2019,21/01/2019,19/01/2019,01/02/2019,"10MKA1120 FS","10MKA1120","10MKA1140 FF,10MKA1150 FS","10MKA1140,10MKA1150",180,218,181,220,42,50,42,51,43,,"CCGT D1_Integrated Programme Schedule;M&E;Construction;M&E Construction;Generator (MK);(10MKA) Generator Incl. Bearing System 10 MKD",1,2,0.0000026084,0.0120040692,0.0006103764,10,1.0,0.0001651078,0.0068493151,0.0061538462,0.0039375,0.0308093995,0.0019305019,0.0224215247,1.0,0.0343652029
1.3.1.1.17.5-8,10MKA1140,"Release for Bus Bar Interface at the Terminal Bushing",7112,"CCGTD1_IPS",TT_FinMile,"58377",-,-,-,100,TK_Complete,01/04/2019,01/04/2019,01/04/2019,01/04/2019,"10MKA1130 FF","10MKA1130","10CHA30 FS,10BAC10 FS,10MKA1150 FS","10CHA30,10BAC10,10MKA1150",191,228,191,228,44,53,44,53,50,,"CCGT D1_Integrated Programme Schedule;M&E;Construction;M&E Construction;Generator (MK);(10MKA) Generator Incl. Bearing System 10 MKD",1,3,0.00000472,0.0118006104,0.0008138352,0,1.0,0.0000812387,0.0068493151,0.0092307692,0.007125,0.0302872063,0.0025740026,0.0,1.0,0.0
1.3.1.1.17.5-9,10MKA1150,"Removal of Transport Covers, Installation of Frame Covers",7112,"CCGTD1_IPS",TT_Task,"58377",-,-,-,100,TK_Complete,16/03/2019,20/10/2018,19/03/2019,25/10/2018,"10MKA1130 FS,10MKA1140 FS","10MKA1130,10MKA1140","","",189,205,189,205,44,47,44,48,48,,"CCGT D1_Integrated Programme Schedule;M&E;Construction;M&E Construction;Generator (MK);(10MKA) Generator Incl. Bearing System 10 MKD",2,0,0.0,0.0,0.001017294,3,1.0,0.0002294618,0.0136986301,0.0,0.0,0.0,0.0032175032,0.0067264574,1.0,0.0607341221
1.3.1.1.17.5-10,10MKA1170,"Common Coupling Alignment GT/Gen/ST (with Installed Clutch)",7112,"CCGTD1_IPS",TT_Task,"58377",-,-,-,100,TK_Complete,02/02/2019,14/01/2019,13/03/2019,12/04/2019,"10MA-1440 SS,10MA-1430 SS","10MA-1440,10MA-1430","10MBA1190 FS,10MKA1200 FS,10MBR1020 FS,10MKA1190 FS","10MBA1190,10MKA1200,10MBR1020,10MKA1190",183,217,189,230,42,50,44,53,46,,"CCGT D1_Integrated Programme Schedule;M&E;Construction;M&E Construction;Generator (MK);(10MKA) Generator Incl. Bearing System 10 MKD",2,4,0.0001655811,0.0225839268,0.012207528,39,0.0,0.0003941424,0.0136986301,0.0123076923,0.2499479167,0.0579634465,0.0386100386,0.0874439462,0.0,0.1282116741
1.3.1.1.17.5-11,10MKA1190,"Fix Generator into Position",7112,"CCGTD1_IPS",TT_Task,"58377",-,-,-,100,TK_Complete,11/02/2019,11/02/2019,21/02/2019,21/02/2019,"10MKA1170 FS","10MKA1170","10MKA1200 FS,10MKA1105 FS","10MKA1200,10MKA1105",184,221,186,222,43,51,43,52,47,,"CCGT D1_Integrated Programme Schedule;M&E;Construction;M&E Construction;Generator (MK);(10MKA) Generator Incl. Bearing System 10 MKD",1,2,0.0000656873,0.0164801628,0.0124109868,10,1.0,0.0001266042,0.0068493151,0.0061538462,0.09915625,0.0422976501,0.0392535393,0.0224215247,1.0,0.018588417
1.3.1.1.17.5-12,10MKA1200,"Grouting the Generator Foundation Beams",7112,"CCGTD1_IPS",TT_Task,"58377",-,-,-,100,TK_Complete,25/02/2019,07/03/2019,06/03/2019,07/03/2019,"10MKA1170 FS,10MKA1190 FS","10MKA1170,10MKA1190","10MKA1230 FS,10MKA1210 FS,SC1040 FS","10MKA1230,10MKA1210,SC1040",186,224,188,224,43,52,43,52,48,,"CCGT D1_Integrated Programme Schedule;M&E;Construction;M&E Construction;Generator (MK);(10MKA) Generator Incl. Bearing System 10 MKD",2,3,0.0000458548,0.0079348932,0.0126144456,9,1.0,0.0002278815,0.0136986301,0.0092307692,0.06921875,0.0203655352,0.0398970399,0.0201793722,1.0,0.0600865816
1.3.1.1.17.5-13,10MKA1210,"Coupling of Collector Rotor",7112,"CCGTD1_IPS",TT_Task,"58377",-,-,-,100,TK_Complete,22/02/2019,15/02/2019,25/02/2019,09/04/2019,"10MKA1200 FS","10MKA1200","10MKA1220 FF","10MKA1220",186,222,186,229,43,51,43,53,47,,"CCGT D1_Integrated Programme Schedule;M&E;Construction;M&E Construction;Generator (MK);(10MKA) Generator Incl. Bearing System 10 MKD",1,1,0.0000241281,0.0063072228,0.0128179044,3,0.0,0.0001115111,0.0068493151,0.0030769231,0.036421875,0.0161879896,0.0405405405,0.0067264574,0.0,0.0124040592
1.3.1.1.17.5-14,10MKA1220,"Release for Coupling of the Gas Turbine",7112,"CCGTD1_IPS",TT_FinMile,"58377",-,-,-,100,TK_Complete,11/04/2019,11/04/2019,11/04/2019,11/04/2019,"10MKA1210 FF","10MKA1210","10MBA1300 FS,SC1050 FS,10MKA1095 FS","10MBA1300,SC1050,10MKA1095",193,229,193,229,45,53,45,53,53,,"CCGT D1_Integrated Programme Schedule;M&E;Construction;M&E Construction;Generator (MK);(10MKA) Generator Incl. Bearing System 10 MKD",1,3,0.0000227618,0.006103764,0.0130213632,0,1.0,0.0000812387,0.0068493151,0.0092307692,0.034359375,0.0156657963,0.0411840412,0.0,1.0,0.0
1.3.1.1.17.5-15,10MKA1230,"Assembling of Collector",7112,"CCGTD1_IPS",TT_Task,"58377",-,-,-,100,TK_Complete,10/04/2019,10/04/2019,26/04/2019,12/04/2019,"10MKA1200 FS","10MKA1200","10MKA1240 FS","10MKA1240",193,229,195,230,45,53,45,53,53,,"CCGT D1_Integrated Programme Schedule;M&E;Construction;M&E Construction;Generator (MK);(10MKA) Generator Incl. Bearing System 10 MKD",1,1,0.000016634,0.004069176,0.0128179044,16,1.0,0.0002426915,0.0068493151,0.0030769231,0.025109375,0.0104438642,0.0405405405,0.0358744395,1.0,0.0661549824
1.3.1.1.17.5-16,10MKA1030,"Commence Weekly Winding Insulation Resistance Checks",7112,"CCGTD1_IPS",TT_Mile,"58377",-,-,-,100,TK_Complete,31/10/2018,25/10/2018,31/10/2018,25/10/2018,"10MKA1020 FS","10MKA1020","10MKA1050 FS,10MKA1070 FS,10MKW10 FS,10MBA1100 FS,10MKA1070 SS,10MKW10 SS,10MBA1100 SS","10MKA1050,10MKA1070,10MKW10,10MBA1100,10MKA1070,10MKW10,10MBA1100",170,205,170,205,39,48,39,48,38,,"CCGT D1_Integrated Programme Schedule;M&E;Construction;M&E Construction;Generator (MK);(10MKA) Generator Incl. Bearing System 10 MKD",1,4,0.000017224,0.0240081384,0.0073245168,0,1.0,0.0000812387,0.0068493151,0.0123076923,0.026,0.061618799,0.0231660232,0.0,1.0,0.0
1.3.1.1.17.5-17,10MKA1050,"Shift Generator into Position",7112,"CCGTD1_IPS",TT_Task,"58377",-,-,-,100,TK_Complete,23/10/2018,26/09/2018,24/10/2018,04/10/2018,"10MKA1030 FS,10MKA1010 FS,10MKA1020 FS","10MKA1030,10MKA1010,10MKA1020","10MKA1070 FS,10MKW10 FS,10MBA1100 FS","10MKA1070,10MKW10,10MBA1100",168,201,169,202,39,47,39,47,37,,"CCGT D1_Integrated Programme Schedule;M&E;Construction;M&E Construction;Generator (MK);(10MKA) Generator Incl. Bearing System 10 MKD",3,3,0.000017224,0.0238046796,0.0075279756,1,0.2,0.000301816,0.0205479452,0.0092307692,0.026,0.0610966057,0.0238095238,0.0022421525,0.2,0.0903811271
1.3.1.1.17.5-18,10MKA1080,"Installation and Coupling of Collector Rotor, Swing Check, Decoupling",7112,"CCGTD1_IPS",TT_Task,"58377",-,-,-,100,TK_Complete,01/04/2019,05/04/2019,12/04/2019,27/04/2019,"10MKA1070 FS,10MKA1160 FS","10MKA1070,10MKA1160","10MKA1090 FS","10MKA1090",191,229,193,232,44,53,45,54,50,,"CCGT D1_Integrated Programme Schedule;M&E;Construction;M&E Construction;Generator (MK);(10MKA) Generator Incl. Bearing System 10 MKD",2,1,0.0000011593,0.0056968464,0.0083418108,11,0.0,0.0006609404,0.0136986301,0.0030769231,0.00175,0.0146214099,0.0263835264,0.0246636771,0.0,0.2375316505
1.3.1.1.17.5-19,10MKA1100,"Checking Instrumentaion and Commissioning Seal Oil System Begin",7112,"CCGTD1_IPS",TT_FinMile,"58377",-,-,-,100,TK_Complete,12/04/2019,12/04/2019,12/04/2019,12/04/2019,"10MKA1090 FS","10MKA1090","10MKQ10 FS","10MKQ10",193,230,193,230,45,53,45,53,53,,"CCGT D1_Integrated Programme Schedule;M&E;Construction;M&E Construction;Generator (MK);(10MKA) Generator Incl. Bearing System 10 MKD",1,1,0.0000022772,0.0038657172,0.0087487284,0,1.0,0.0000812387,0.0068493151,0.0030769231,0.0034375,0.009921671,0.0276705277,0.0,1.0,0.0
1.3.1.1.17.5-20,10MKA1105,"Release for Connection of Piping to The Generator",7112,"CCGTD1_IPS",TT_FinMile,"58377",-,-,-,100,TK_Complete,10/04/2019,10/04/2019,10/04/2019,10/04/2019,"10MKA1070 FS,10MKA1190 FS","10MKA1070,10MKA1190","10MKW20 FF,10MKQ20 FF,10MKF20 FF,10MKG30 FF","10MKW20,10MKQ20,10MKF20,10MKG30",193,229,193,229,45,53,45,53,53,,"CCGT D1_Integrated Programme Schedule;M&E;Construction;M&E Construction;Generator (MK);(10MKA) Generator Incl. Bearing System 10 MKD",2,4,0.0001021641,0.0113936928,0.0160732452,0,1.0,0.0000812387,0.0136986301,0.0123076923,0.15421875,0.0292428198,0.0508365508,0.0,1.0,0.0
1.3.1.1.17.5-21,10MKA1240,"Removal of Dessicant Bags (Timing to Start - TBE)",7112,"CCGTD1_IPS",TT_Task,"58377",-,-,-,100,TK_Complete,31/08/2019,15/06/2019,02/09/2019,15/06/2019,"10MKA1230 FS","10MKA1230","10MKA1250 FS,10MKA1260 FS","10MKA1250,10MKA1260",213,239,213,239,49,55,49,55,70,,"CCGT D1_Integrated Programme Schedule;M&E;Construction;M&E Construction;Generator (MK);(10MKA) Generator Incl. Bearing System 10 MKD",1,2,0.0000148122,0.0038657172,0.0130213632,2,1.0,0.0002870852,0.0068493151,0.0061538462,0.022359375,0.009921671,0.0411840412,0.0044843049,1.0,0.0843451965
1.3.1.1.17.5-22,10MKA1250,"Generator Leak Test",7112,"CCGTD1_IPS",TT_Task,"58377",-,-,-,100,TK_Complete,04/10/2019,07/09/2019,08/10/2019,14/09/2019,"10MKA1240 FS,10MKW90 SS,10MKA1260 FS","10MKA1240,10MKW90,10MKA1260","10MKA1290 FS","10MKA1290",218,251,218,252,50,58,51,58,78,,"CCGT D1_Integrated Programme Schedule;M&E;Construction;M&E Construction;Generator (MK);(10MKA) Generator Incl. Bearing System 10 MKD",3,1,0.0000115827,0.003051882,0.019328586,4,1.0,0.0005468116,0.0205479452,0.0030769231,0.017484375,0.0078328982,0.0611325611,0.0089686099,1.0,0.1907676228
1.3.1.1.17.5-23,10MKA1260,"Install Bearing Bracket Oil Seals TE/EE",7112,"CCGTD1_IPS",TT_Task,"58377",-,-,-,100,TK_Complete,03/05/2019,03/05/2019,06/05/2019,06/05/2019,"10MKA1240 FS","10MKA1240","10MKA1270 FS,10MKA1250 FS","10MKA1270,10MKA1250",196,233,196,233,45,54,45,54,57,,"CCGT D1_Integrated Programme Schedule;M&E;Construction;M&E Construction;Generator (MK);(10MKA) Generator Incl. Bearing System 10 MKD",1,2,0.0000053825,0.0036622584,0.013224822,3,1.0,0.000185675,0.0068493151,0.0061538462,0.008125,0.0093994778,0.0418275418,0.0067264574,1.0,0.0427925832
1.3.1.1.17.5-24,10MKA1270,"Install Grounding Brushes",7112,"CCGTD1_IPS",TT_Task,"58377",-,-,-,100,TK_Complete,07/05/2019,10/08/2019,07/05/2019,28/08/2019,"10MKA1260 FS","10MKA1260","10MKA1280 FS","10MKA1280",196,247,196,249,45,57,45,58,57,,"CCGT D1_Integrated Programme Schedule;M&E;Construction;M&E Construction;Generator (MK);(10MKA) Generator Incl. Bearing System 10 MKD",1,1,0.0000027327,0.0032553408,0.0134282808,0,0.0,0.0000812387,0.0068493151,0.0030769231,0.004125,0.0083550914,0.0424710425,0.0,0.0,0.0
1.3.1.1.17.5-25,10MKA1280,"Install Coupling Cover",7112,"CCGTD1_IPS",TT_Task,"58377",-,-,-,100,TK_Complete,03/06/2019,25/06/2019,04/06/2019,08/10/2019,"10MKA1270 FS","10MKA1270","10MKA1290 FS","10MKA1290",200,240,200,255,46,56,46,59,61,,"CCGT D1_Integrated Programme Schedule;M&E;Construction;M&E Construction;Generator (MK);(10MKA) Generator Incl. Bearing System 10 MKD",1,1,0.0000006211,0.003051882,0.0136317396,1,0.0,0.0001503957,0.0068493151,0.0030769231,0.0009375,0.0078328982,0.0431145431,0.0022421525,0.0,0.0283369572
1.3.1.1.17.5-26,10MKA1095,"EC&I",7112,"CCGTD1_IPS",TT_Task,"58377",-,-,-,100,TK_Complete,13/04/2019,15/04/2019,25/05/2019,04/09/2019,"SI1C--4-25 FS,EDS.1080 FS,10MKA1090 FS,10MKA1220 FS","SI1C--4-25,EDS.1080,10MKA1090,10MKA1220","10MKA1290 FS","10MKA1290",193,230,199,250,45,53,46,58,54,,"CCGT D1_Integrated Programme Schedule;M&E;Construction;M&E Construction;Generator (MK);(10MKA) Generator Incl. Bearing System 10 MKD",4,1,0.0000212023,0.003051882,0.0177009156,42,0.0,0.0001815823,0.0273972603,0.0030769231,0.0320052083,0.0078328982,0.055984556,0.0941704036,0.0,0.0411156105
1.3.1.1.17.5-27,10MKA1290,"Pre-Commissioning/Cleaning",7112,"CCGTD1_IPS",TT_Task,"58377",-,-,-,100,TK_Complete,09/10/2019,14/09/2019,16/10/2019,25/10/2019,"10MKA1280 FS,10MKA1095 FS,10MKA1250 FS","10MKA1280,10MKA1095,10MKA1250","TOP1200 FS","TOP1200",219,252,220,258,51,58,51,60,79,,"CCGT D1_Integrated Programme Schedule;M&E;Construction;M&E Construction;Generator (MK);(10MKA) Generator Incl. Bearing System 10 MKD",3,1,0.0000309218,0.0028484232,0.021363174,7,0.0,0.0008300947,0.0205479452,0.0030769231,0.0466770833,0.007310705,0.0675675676,0.0156950673,0.0,0.3068423349
1.3.1.1.17.5-28,10MKA1160,"Install H2 Shaft Seals",7112,"CCGTD1_IPS",TT_Task,"58377",-,-,-,100,TK_Complete,07/11/2018,19/11/2018,24/11/2018,20/12/2018,"10MKA1070 FS","10MKA1070","10MKA1080 FS","10MKA1080",171,209,173,213,39,48,40,49,38,,"CCGT D1_Integrated Programme Schedule;M&E;Construction;M&E Construction;Generator (MK);(10MKA) Generator Incl. Bearing System 10 MKD",1,1,0.0,0.0059003052,0.008138352,17,0.0,0.0004215908,0.0068493151,0.0030769231,0.0,0.0151436031,0.0257400257,0.0381165919,0.0,0.1394586243
1.3.1.1.18,58365,"HRSG (HA)",7112,"CCGTD1_IPS",WBS,"58325",,,,100,Complete,06/03/2018,12/03/2018,05/11/2019,,,,,,135,173,222,,31,40,52,,,,"CCGT D1_Integrated Programme Schedule;M&E;Construction;M&E Construction"
1.3.1.1.18.1,58375,"(ZTA &  ZTB) Chemical Clean and Steam Blow",7112,"CCGTD1_IPS",WBS,"58365",,,,,NotStart,,,,,,,,,,,,,,,,,,,"CCGT D1_Integrated Programme Schedule;M&E;Construction;M&E Construction;HRSG (HA)"
1.3.1.1.18.2,58374,"(None) HRSG Electrical and I&C",7112,"CCGTD1_IPS",WBS,"58365",,,,100,Complete,25/02/2019,14/01/2019,12/08/2019,29/06/2019,,,,,186,217,210,241,43,50,49,56,,,"CCGT D1_Integrated Programme Schedule;M&E;Construction;M&E Construction;HRSG (HA)"
1.3.1.1.18.2-1,ECS20.1050,"Installation of Cable Support Structure for HRSG",7112,"CCGTD1_IPS",TT_Task,"58374",-,-,-,100,TK_Complete,24/04/2019,24/04/2019,20/07/2019,29/06/2019,"SI-C-4C40 FS,SI1CJF4-25 FS,KD_D06 FS,EDS.1070 SS,ECS20.1100 FS","SI-C-4C40,SI1CJF4-25,KD_D06,EDS.1070,ECS20.1100","SC1200 FS,ECS20.1060 SS","SC1200,ECS20.1060",195,231,207,241,45,54,48,56,55,,"CCGT D1_Integrated Programme Schedule;M&E;Construction;M&E Construction;HRSG (HA);(None) HRSG Electrical and I&C",5,2,0.0000023379,0.002034588,0.0097660224,87,1.0,0.0003058073,0.0342465753,0.0061538462,0.0035291667,0.0052219321,0.0308880309,0.1950672646,1.0,0.0920165639
1.3.1.1.18.2-2,ECS20.1060,"Installation & Termination of Power & Control Cable for HRSG",7112,"CCGTD1_IPS",TT_Task,"58374",-,-,-,100,TK_Complete,24/05/2019,24/05/2019,12/08/2019,26/06/2019,"SI-C-4C40 FS,ECS20.1070 FF,ECS20.1050 SS,SI1CJF4-25 FS","SI-C-4C40,ECS20.1070,ECS20.1050,SI1CJF4-25","SC1200 FS","SC1200",199,236,210,240,46,55,49,56,59,,"CCGT D1_Integrated Programme Schedule;M&E;Construction;M&E Construction;HRSG (HA);(None) HRSG Electrical and I&C",4,1,0.0000001159,0.0018311292,0.01017294,80,1.0,0.0005147947,0.0273972603,0.0030769231,0.000175,0.0046997389,0.0321750322,0.1793721973,1.0,0.1776487362
1.3.1.1.18.2-3,ECS20.1070,"Installation of Distribution Panel & Control Panel and Racks for HRSG",7112,"CCGTD1_IPS",TT_Task,"58374",-,-,-,100,TK_Complete,24/04/2019,24/04/2019,10/06/2019,22/06/2019,"KD_D06 FS,SI1CJF4-25 FS,ECS20.1100 FS","KD_D06,SI1CJF4-25,ECS20.1100","ECS20.1060 FF,SC1200 FS","ECS20.1060,SC1200",195,231,201,240,45,54,47,56,55,,"CCGT D1_Integrated Programme Schedule;M&E;Construction;M&E Construction;HRSG (HA);(None) HRSG Electrical and I&C",3,2,0.0000019336,0.002034588,0.0093591048,47,0.0,0.000178089,0.0205479452,0.0061538462,0.00291875,0.0052219321,0.0296010296,0.1053811659,0.0,0.039684221
1.3.1.1.18.2-4,ECS20.1080,"Installation of Instrumentation for HRSG",7112,"CCGTD1_IPS",TT_Task,"58374",-,-,-,100,TK_Complete,01/04/2019,22/04/2019,10/06/2019,28/06/2019,"SI1CJF4-25 FS,HRS11.1170 FF","SI1CJF4-25,HRS11.1170","SC1200 FS","SC1200",191,231,201,241,44,54,47,56,50,,"CCGT D1_Integrated Programme Schedule;M&E;Construction;M&E Construction;HRSG (HA);(None) HRSG Electrical and I&C",2,1,0.00000118,0.0018311292,0.0097660224,70,1.0,0.0001482176,0.0136986301,0.0030769231,0.00178125,0.0046997389,0.0308880309,0.1569506726,1.0,0.0274444791
1.3.1.1.18.2-5,ECS20.1110,"Installation & Termination of Cable for Lighting Fittings for HRSG",7112,"CCGTD1_IPS",TT_Task,"58374",-,-,-,100,TK_Complete,25/02/2019,14/01/2019,24/04/2019,27/06/2019,"KD_D06 FS,SI1CJF4-25 FS,ECS20.1100 FS","KD_D06,SI1CJF4-25,ECS20.1100","SC1200 FS","SC1200",186,217,195,240,43,50,45,56,48,,"CCGT D1_Integrated Programme Schedule;M&E;Construction;M&E Construction;HRSG (HA);(None) HRSG Electrical and I&C",3,1,0.0000010227,0.0018311292,0.0093591048,58,0.0,0.0002007561,0.0205479452,0.0030769231,0.00154375,0.0046997389,0.0296010296,0.130044843,0.0,0.0489720174
1.3.1.1.18.3,58373,"(10CFE) CEMS",7112,"CCGTD1_IPS",WBS,"58365",,,,100,Complete,28/03/2019,15/03/2019,19/08/2019,20/09/2019,,,,,191,226,211,253,44,52,49,59,,,"CCGT D1_Integrated Programme Schedule;M&E;Construction;M&E Construction;HRSG (HA)"
1.3.1.1.18.3-1,10CFE10,"Skid/Panels/Cabinets Installation",7112,"CCGTD1_IPS",TT_Task,"58373",-,-,-,100,TK_Complete,18/06/2019,20/05/2019,05/07/2019,14/06/2019,"SI-CFE4-40 FS,EDS.1050 FS,KD_E03 FF,KD_E05 FS","SI-CFE4-40,EDS.1050,KD_E03,KD_E05","00BAW-02-40 FF,10CFE100 FS,10CFE120 FS,10CFE150 FS","00BAW-02-40,10CFE100,10CFE120,10CFE150",202,235,205,239,47,54,47,55,63,,"CCGT D1_Integrated Programme Schedule;M&E;Construction;M&E Construction;HRSG (HA);(10CFE) CEMS",4,4,0.0000023324,0.0038657172,0.001017294,17,0.0,0.0002220193,0.0273972603,0.0123076923,0.0035208333,0.009921671,0.0032175032,0.0381165919,0.0,0.0576845591
1.3.1.1.18.3-2,10CFE110,"Cable",7112,"CCGTD1_IPS",TT_Task,"58373",-,-,-,100,TK_Complete,20/06/2019,01/06/2019,09/07/2019,10/06/2019,"10CFE100 FS","10CFE100","10CFE130 FS","10CFE130",203,237,205,238,47,55,48,55,64,,"CCGT D1_Integrated Programme Schedule;M&E;Construction;M&E Construction;HRSG (HA);(10CFE) CEMS",1,1,0.0000000414,0.0002034588,0.0014242116,19,1.0,0.0001785542,0.0068493151,0.0030769231,0.0000625,0.0005221932,0.0045045045,0.0426008969,1.0,0.0398748276
1.3.1.1.18.3-3,10CFE100,"Cable Raceway",7112,"CCGTD1_IPS",TT_Task,"58373",-,-,-,100,TK_Complete,28/03/2019,15/03/2019,18/04/2019,20/06/2019,"10CFE10 FS","10CFE10","10CFE110 FS","10CFE110",191,226,194,239,44,52,45,55,49,,"CCGT D1_Integrated Programme Schedule;M&E;Construction;M&E Construction;HRSG (HA);(10CFE) CEMS",1,1,0.0000002484,0.0004069176,0.0012207528,21,0.0,0.0001143054,0.0068493151,0.0030769231,0.000375,0.0010443864,0.0038610039,0.0470852018,0.0,0.0135490107
1.3.1.1.18.3-4,10CFE130,"Instrumentation",7112,"CCGTD1_IPS",TT_Task,"58373",-,-,-,100,TK_Complete,31/07/2019,20/07/2019,19/08/2019,20/09/2019,"10CFE120 FS,10CFE110 FS,10CFE150 FS","10CFE120,10CFE110,10CFE150","","",209,244,211,253,48,56,49,59,67,,"CCGT D1_Integrated Programme Schedule;M&E;Construction;M&E Construction;HRSG (HA);(10CFE) CEMS",3,0,0.0,0.0,0.002034588,19,0.0,0.000457376,0.0205479452,0.0,0.0,0.0,0.0064350064,0.0426008969,0.0,0.1541215487
1.3.1.1.18.3-5,10CFE120,"Tubing",7112,"CCGTD1_IPS",TT_Task,"58373",-,-,-,100,TK_Complete,14/06/2019,14/06/2019,06/07/2019,17/08/2019,"10CFE10 FS","10CFE10","10CFE130 FS","10CFE130",202,239,205,248,47,55,47,57,63,,"CCGT D1_Integrated Programme Schedule;M&E;Construction;M&E Construction;HRSG (HA);(10CFE) CEMS",1,1,0.0000001242,0.0002034588,0.0012207528,22,0.0,0.00011588,0.0068493151,0.0030769231,0.0001875,0.0005221932,0.0038610039,0.0493273543,0.0,0.0141942017
1.3.1.1.18.3-6,10CFE150,"Installation CEMS equiptment on Stack",7112,"CCGTD1_IPS",TT_Task,"58373",-,-,-,100,TK_Complete,14/06/2019,14/06/2019,26/07/2019,06/09/2019,"10CFE10 FS","10CFE10","10CFE130 FS","10CFE130",202,239,208,251,47,55,48,58,63,,"CCGT D1_Integrated Programme Schedule;M&E;Construction;M&E Construction;HRSG (HA);(10CFE) CEMS",1,1,0.0000001242,0.0002034588,0.0012207528,42,0.0,0.0001473721,0.0068493151,0.0030769231,0.0001875,0.0005221932,0.0038610039,0.0941704036,0.0,0.0270980214
1.3.1.1.18.4,58372,"(10LCL) HRSG Drains System",7112,"CCGTD1_IPS",WBS,"58365",,,,100,Complete,08/02/2019,08/02/2019,18/09/2019,15/11/2019,,,,,184,221,216,261,43,51,50,60,,,"CCGT D1_Integrated Programme Schedule;M&E;Construction;M&E Construction;HRSG (HA)"
1.3.1.1.18.4-1,10LCL30,"Install Small Bore Pipe/Valves/Supports",7112,"CCGTD1_IPS",TT_Task,"58372",-,-,-,100,TK_Complete,04/03/2019,04/03/2019,30/05/2019,25/07/2019,"SI1--P4H40 FS,SI1--P4A40 FS,10LCL20 FS","SI1--P4H40,SI1--P4A40,10LCL20","10LCL40 FS,10LCL50 FS,10LCL80 FS","10LCL40,10LCL50,10LCL80",187,224,200,244,43,52,46,57,48,,"CCGT D1_Integrated Programme Schedule;M&E;Construction;M&E Construction;HRSG (HA);(10LCL) HRSG Drains System",3,3,0.0000100819,0.0036622584,0.01017294,87,0.0,0.0001672236,0.0205479452,0.0092307692,0.01521875,0.0093994778,0.0321750322,0.1950672646,0.0,0.0352321456
1.3.1.1.18.4-2,10LCL40,"NDE",7112,"CCGTD1_IPS",TT_Task,"58372",-,-,-,100,TK_Complete,25/03/2019,25/03/2019,11/06/2019,10/08/2019,"10LCL30 FS,10LCL20 FS","10LCL30,10LCL20","10LCL60 FF","10LCL60",190,227,201,247,44,53,47,57,49,,"CCGT D1_Integrated Programme Schedule;M&E;Construction;M&E Construction;HRSG (HA);(10LCL) HRSG Drains System",2,1,0.0000042232,0.003051882,0.0103763988,78,0.0,0.0002309395,0.0136986301,0.0030769231,0.006375,0.0078328982,0.0328185328,0.1748878924,0.0,0.0613395932
1.3.1.1.18.4-3,10LCL60,"Line Inspection",7112,"CCGTD1_IPS",TT_Task,"58372",-,-,-,100,TK_Complete,08/07/2019,03/08/2019,17/07/2019,07/08/2019,"10LCL40 FF","10LCL40","10LCL70 FS","10LCL70",205,246,207,246,48,57,48,57,65,,"CCGT D1_Integrated Programme Schedule;M&E;Construction;M&E Construction;HRSG (HA);(10LCL) HRSG Drains System",1,1,0.0000026913,0.0028484232,0.0105798576,9,1.0,0.0002778895,0.0068493151,0.0030769231,0.0040625,0.007310705,0.0334620335,0.0201793722,1.0,0.080577297
1.3.1.1.18.4-4,10LCL70,"Hydro Test",7112,"CCGTD1_IPS",TT_Task,"58372",-,-,-,100,TK_Complete,05/08/2019,05/08/2019,15/08/2019,10/08/2019,"10LCL60 FS","10LCL60","10LCL90 FS","10LCL90",209,246,211,247,48,57,49,57,69,,"CCGT D1_Integrated Programme Schedule;M&E;Construction;M&E Construction;HRSG (HA);(10LCL) HRSG Drains System",1,1,0.0000010765,0.0026449644,0.0107833164,10,1.0,0.0003178882,0.0068493151,0.0030769231,0.001625,0.0067885117,0.0341055341,0.0224215247,1.0,0.0969666912
1.3.1.1.18.4-5,10LCL80,"Painting/Insulation",7112,"CCGTD1_IPS",TT_Task,"58372",-,-,-,100,TK_Complete,21/05/2019,21/05/2019,22/06/2019,15/11/2019,"10LCL30 FS","10LCL30","10LCL90 FS","10LCL90",198,235,203,261,46,54,47,60,59,,"CCGT D1_Integrated Programme Schedule;M&E;Construction;M&E Construction;HRSG (HA);(10LCL) HRSG Drains System",1,1,0.0000031467,0.0026449644,0.0103763988,32,0.0,0.0001126625,0.0068493151,0.0030769231,0.00475,0.0067885117,0.0328185328,0.0717488789,0.0,0.0128758414
1.3.1.1.18.4-6,10LCL90,"Pre-Commissioning/Flushing/Cleaning",7112,"CCGTD1_IPS",TT_Task,"58372",-,-,-,100,TK_Complete,05/09/2019,07/09/2019,18/09/2019,15/11/2019,"10LCL70 FS,10LCL80 FS,10LCL50 FS","10LCL70,10LCL80,10LCL50","TOP1910 FS","TOP1910",214,251,216,261,49,58,50,60,75,,"CCGT D1_Integrated Programme Schedule;M&E;Construction;M&E Construction;HRSG (HA);(10LCL) HRSG Drains System",3,1,0.000006666,0.0024415056,0.0113936928,13,0.0,0.0005463331,0.0205479452,0.0030769231,0.0100625,0.0062663185,0.036036036,0.0291479821,0.0,0.1905715329
1.3.1.1.18.4-7,10LCL20,"Install Large Bore Pipe/Valves/Supports",7112,"CCGTD1_IPS",TT_Task,"58372",-,-,-,100,TK_Complete,08/02/2019,08/02/2019,06/05/2019,27/07/2019,"SI1--P4A40 FS,HRS10.1050 FS,SI1--P4H40 FS,HRS11.1170 FS","SI1--P4A40,HRS10.1050,SI1--P4H40,HRS11.1170","10LCL30 FS,10LCL40 FS","10LCL30,10LCL40",184,221,196,245,43,51,45,57,47,,"CCGT D1_Integrated Programme Schedule;M&E;Construction;M&E Construction;HRSG (HA);(10LCL) HRSG Drains System",4,2,0.0000165409,0.0038657172,0.0099694812,87,0.0,0.0001816208,0.0273972603,0.0061538462,0.02496875,0.009921671,0.0315315315,0.1950672646,0.0,0.0411313712
1.3.1.1.18.4-8,10LCL50,"EC+I",7112,"CCGTD1_IPS",TT_Task,"58372",-,-,-,100,TK_Complete,18/06/2019,08/06/2019,23/07/2019,21/09/2019,"10LCL30 FS","10LCL30","10LCL90 FS","10LCL90",202,238,207,253,47,55,48,59,63,,"CCGT D1_Integrated Programme Schedule;M&E;Construction;M&E Construction;HRSG (HA);(10LCL) HRSG Drains System",1,1,0.0000031467,0.0026449644,0.0103763988,35,0.0,0.0001156085,0.0068493151,0.0030769231,0.00475,0.0067885117,0.0328185328,0.0784753363,0.0,0.0140829516
1.3.1.1.18.5,58371,"(10HBK) HRSG Exhaust Gas System",7112,"CCGTD1_IPS",WBS,"58365",,,,100,Complete,15/10/2018,31/08/2018,06/08/2019,21/11/2019,,,,,167,198,209,261,39,46,48,61,,,"CCGT D1_Integrated Programme Schedule;M&E;Construction;M&E Construction;HRSG (HA)"
1.3.1.1.18.5-1,ECS20.1190,"Erection of Stack",7112,"CCGTD1_IPS",TT_Task,"58371",-,-,-,100,TK_Complete,15/10/2018,31/08/2018,15/04/2019,20/06/2019,"KD_B01 FS,HRS10.1060 FS,HRS10.1050 FS","KD_B01,HRS10.1060,HRS10.1050","TOP1870 FS,ADD_BY_CLP_01 SS","TOP1870,ADD_BY_CLP_01",167,198,193,239,39,46,45,55,37,,"CCGT D1_Integrated Programme Schedule;M&E;Construction;M&E Construction;HRSG (HA);(10HBK) HRSG Exhaust Gas System",3,2,0.0000062934,0.002034588,0.0089521872,182,0.0,0.0002151464,0.0205479452,0.0061538462,0.0095,0.0052219321,0.0283140283,0.4080717489,0.0,0.0548684075
1.3.1.1.18.5-2,ADD_BY_CLP_01,"Insulation of Stack + Complete Outlet Duct",7112,"CCGTD1_IPS",TT_Task,"58371",-,-,-,100,TK_Complete,30/04/2019,13/05/2019,06/08/2019,21/11/2019,"ECS20.1190 SS","ECS20.1190","TOP1870 FS","TOP1870",195,234,209,261,45,54,48,61,56,,"CCGT D1_Integrated Programme Schedule;M&E;Construction;M&E Construction;HRSG (HA);(10HBK) HRSG Exhaust Gas System",1,1,0.0,0.0018311292,0.009155646,98,0.0,0.000264385,0.0068493151,0.0030769231,0.0,0.0046997389,0.028957529,0.2197309417,0.0,0.0750438614
1.3.1.1.18.6,58370,"(10HAA) HRSG Condensate Preheating System",7112,"CCGTD1_IPS",WBS,"58365",,,,100,Complete,10/12/2018,10/12/2018,30/09/2019,11/11/2019,,,,,175,212,217,260,41,49,50,60,,,"CCGT D1_Integrated Programme Schedule;M&E;Construction;M&E Construction;HRSG (HA)"
1.3.1.1.18.6-1,10HAA10,"Install Equipment/Skids/Pumps",7112,"CCGTD1_IPS",TT_Task,"58370",-,-,-,100,TK_Complete,24/05/2019,23/05/2019,04/06/2019,10/06/2019,"SI1HAD4E25 FS,KD_D06 FS,A2380 FS,KD_H01 FS","SI1HAD4E25,KD_D06,A2380,KD_H01","10HAA20 FS","10HAA20",199,235,200,238,46,55,46,55,59,,"CCGT D1_Integrated Programme Schedule;M&E;Construction;M&E Construction;HRSG (HA);(10HAA) HRSG Condensate Preheating System",4,1,0.0000006004,0.0036622584,0.0016276704,11,0.0,0.0000931782,0.0273972603,0.0030769231,0.00090625,0.0093994778,0.0051480051,0.0246636771,0.0,0.0048921722
1.3.1.1.18.6-2,10HAA20,"Install Large Bore Pipe/Valves/Supports",7112,"CCGTD1_IPS",TT_Task,"58370",-,-,-,100,TK_Complete,10/12/2018,10/12/2018,02/02/2019,21/05/2019,"A2380 FS,SI1HAD4E25 FS,SI1HAD4E40 FS,10HAA10 FS","A2380,SI1HAD4E25,SI1HAD4E40,10HAA10","10HAA30 FS,10HAA40 SS,10HAA50 FS,10HAA80 FS","10HAA30,10HAA40,10HAA50,10HAA80",175,212,183,235,41,49,42,54,42,,"CCGT D1_Integrated Programme Schedule;M&E;Construction;M&E Construction;HRSG (HA);(10HAA) HRSG Condensate Preheating System",4,4,0.0000037802,0.0034587996,0.002034588,54,0.0,0.000181532,0.0273972603,0.0123076923,0.00570625,0.0088772846,0.0064350064,0.1210762332,0.0,0.0410949798
1.3.1.1.18.6-3,10HAA50,"EC+I",7112,"CCGTD1_IPS",TT_Task,"58370",-,-,-,100,TK_Complete,28/06/2019,15/05/2019,22/07/2019,28/09/2019,"10HAA20 FS","10HAA20","10HAA90 FS","10HAA90",204,234,207,254,47,54,48,59,64,,"CCGT D1_Integrated Programme Schedule;M&E;Construction;M&E Construction;HRSG (HA);(10HAA) HRSG Condensate Preheating System",1,1,0.0000008757,0.0022380468,0.0022380468,24,0.0,0.0001095473,0.0068493151,0.0030769231,0.001321875,0.0057441253,0.0070785071,0.0538116592,0.0,0.0115993698
1.3.1.1.18.6-4,10HAA30,"Install Small Bore Pipe/Valves/Supports",7112,"CCGTD1_IPS",TT_Task,"58370",-,-,-,100,TK_Complete,17/04/2019,17/01/2019,28/05/2019,25/06/2019,"10HAA20 FS","10HAA20","10HAA40 FF","10HAA40",194,217,199,240,45,50,46,56,54,,"CCGT D1_Integrated Programme Schedule;M&E;Construction;M&E Construction;HRSG (HA);(10HAA) HRSG Condensate Preheating System",1,1,0.0,0.0028484232,0.0022380468,41,0.0,0.0001295991,0.0068493151,0.0030769231,0.0,0.007310705,0.0070785071,0.0919282511,0.0,0.01981559
1.3.1.1.18.6-5,10HAA40,"NDE",7112,"CCGTD1_IPS",TT_Task,"58370",-,-,-,100,TK_Complete,17/04/2019,10/12/2018,28/05/2019,27/06/2019,"10HAA20 SS,10HAA30 FF","10HAA20,10HAA30","10HAA60 FS","10HAA60",194,212,199,240,45,49,46,56,54,,"CCGT D1_Integrated Programme Schedule;M&E;Construction;M&E Construction;HRSG (HA);(10HAA) HRSG Condensate Preheating System",2,1,0.0000014491,0.0026449644,0.0024415056,41,0.0,0.0002399376,0.0136986301,0.0030769231,0.0021875,0.0067885117,0.0077220077,0.0919282511,0.0,0.0650265748
1.3.1.1.18.6-6,10HAA60,"Line Inspection",7112,"CCGTD1_IPS",TT_Task,"58370",-,-,-,100,TK_Complete,25/06/2019,25/06/2019,08/07/2019,20/07/2019,"10HAA40 FS","10HAA40","10HAA70 FS","10HAA70",203,240,205,244,47,56,48,56,64,,"CCGT D1_Integrated Programme Schedule;M&E;Construction;M&E Construction;HRSG (HA);(10HAA) HRSG Condensate Preheating System",1,1,0.0000014491,0.0024415056,0.0026449644,13,0.0,0.0002855269,0.0068493151,0.0030769231,0.0021875,0.0062663185,0.0083655084,0.0291479821,0.0,0.0837066898
1.3.1.1.18.6-7,10HAA70,"Hydro Test",7112,"CCGTD1_IPS",TT_Task,"58370",-,-,-,100,TK_Complete,11/07/2019,13/07/2019,24/07/2019,07/09/2019,"10HAA60 FS","10HAA60","10HAA90 FS","10HAA90",206,243,208,251,48,56,48,58,66,,"CCGT D1_Integrated Programme Schedule;M&E;Construction;M&E Construction;HRSG (HA);(10HAA) HRSG Condensate Preheating System",1,1,0.0000013663,0.0022380468,0.0028484232,13,0.0,0.0003244112,0.0068493151,0.0030769231,0.0020625,0.0057441253,0.009009009,0.0291479821,0.0,0.0996394825
1.3.1.1.18.6-8,10HAA80,"Painting/Insulation",7112,"CCGTD1_IPS",TT_Task,"58370",-,-,-,100,TK_Complete,28/06/2019,17/05/2019,23/07/2019,11/11/2019,"10HAA20 FS","10HAA20","10HAA90 FS","10HAA90",204,235,207,260,47,54,48,60,64,,"CCGT D1_Integrated Programme Schedule;M&E;Construction;M&E Construction;HRSG (HA);(10HAA) HRSG Condensate Preheating System",1,1,0.0000008757,0.0022380468,0.0022380468,25,0.0,0.0001107268,0.0068493151,0.0030769231,0.001321875,0.0057441253,0.0070785071,0.0560538117,0.0,0.0120826768
1.3.1.1.18.6-9,10HAA90,"Pre-Commissioning/Flushing/Cleaning",7112,"CCGTD1_IPS",TT_Task,"58370",-,-,-,100,TK_Complete,17/09/2019,09/09/2019,30/09/2019,11/11/2019,"10HAA50 FS,10HAA80 FS,10HAA70 FS","10HAA50,10HAA80,10HAA70","TOP1860 FS","TOP1860",215,251,217,260,50,58,50,60,77,,"CCGT D1_Integrated Programme Schedule;M&E;Construction;M&E Construction;HRSG (HA);(10HAA) HRSG Condensate Preheating System",3,1,0.0000037802,0.002034588,0.0034587996,13,0.0,0.0005450812,0.0205479452,0.0030769231,0.00570625,0.0052219321,0.0109395109,0.0291479821,0.0,0.1900585804
1.3.1.1.18.7,58369,"(10HAD10) HRSG HP Steam",7112,"CCGTD1_IPS",WBS,"58365",,,,100,Complete,10/12/2018,08/11/2018,05/11/2019,22/11/2019,,,,,175,207,222,262,41,48,52,61,,,"CCGT D1_Integrated Programme Schedule;M&E;Construction;M&E Construction;HRSG (HA)"
1.3.1.1.18.7-1,10HAD10-20,"Install Large Bore Pipe/Valves/Supports",7112,"CCGTD1_IPS",TT_Task,"58369",-,-,-,100,TK_Complete,10/12/2018,08/11/2018,30/04/2019,17/05/2019,"HRS10.1070 FS,SI1HAD4E25 FS,SI1HAD4E40 FS,HRS10.1060 FS,A2380 FS","HRS10.1070,SI1HAD4E25,SI1HAD4E40,HRS10.1060,A2380","10HAD10-40 SS,ECS20.1200 FS,10HAD10-30 FF,10HAD10-50 FS,10HAD10-80 FS","10HAD10-40,ECS20.1200,10HAD10-30,10HAD10-50,10HAD10-80",175,207,195,235,41,48,45,54,42,,"CCGT D1_Integrated Programme Schedule;M&E;Construction;M&E Construction;HRSG (HA);(10HAD10) HRSG HP Steam",5,5,0.0000300613,0.0059003052,0.0099694812,141,0.0,0.0002978258,0.0342465753,0.0153846154,0.045378125,0.0151436031,0.0315315315,0.3161434978,0.0,0.0887461604
1.3.1.1.18.7-2,10HAD10-50,"EC+I",7112,"CCGTD1_IPS",TT_Task,"58369",-,-,-,100,TK_Complete,15/06/2019,20/05/2019,20/07/2019,28/09/2019,"10HAD10-20 FS","10HAD10-20","10HAD10-90 FF","10HAD10-90",202,235,207,254,47,54,48,59,63,,"CCGT D1_Integrated Programme Schedule;M&E;Construction;M&E Construction;HRSG (HA);(10HAD10) HRSG HP Steam",1,1,0.0000030425,0.0022380468,0.01017294,35,0.0,0.0001284465,0.0068493151,0.0030769231,0.0045927083,0.0057441253,0.0321750322,0.0784753363,0.0,0.0193433173
1.3.1.1.18.7-3,10HAD10-30,"Install Small Bore Pipe/Valves/Supports",7112,"CCGTD1_IPS",TT_Task,"58369",-,-,-,100,TK_Complete,23/02/2019,08/11/2018,26/04/2019,14/05/2019,"SI1HAD4E25 FS,10HAD10-20 FF","SI1HAD4E25,10HAD10-20","10QU30 FF,10HAD10-40 FF","10QU30,10HAD10-40",186,207,195,234,43,48,45,54,47,,"CCGT D1_Integrated Programme Schedule;M&E;Construction;M&E Construction;HRSG (HA);(10HAD10) HRSG HP Steam",2,2,0.000007846,0.0044760936,0.01017294,62,0.0,0.0001708192,0.0136986301,0.0061538462,0.01184375,0.0114882507,0.0321750322,0.1390134529,0.0,0.0367054319
1.3.1.1.18.7-4,10HAD10-40,"NDE",7112,"CCGTD1_IPS",TT_Task,"58369",-,-,-,100,TK_Complete,01/02/2019,30/04/2019,22/03/2019,20/05/2019,"10HAD10-20 SS,10HAD10-30 FF","10HAD10-20,10HAD10-30","10HAD10-60 FS","10HAD10-60",183,232,190,235,42,54,44,54,46,,"CCGT D1_Integrated Programme Schedule;M&E;Construction;M&E Construction;HRSG (HA);(10HAD10) HRSG HP Steam",2,1,0.0000014077,0.0034587996,0.0103763988,49,1.0,0.0002030169,0.0136986301,0.0030769231,0.002125,0.0088772846,0.0328185328,0.1098654709,1.0,0.0498983974
1.3.1.1.18.7-5,10HAD10-60,"Line Inspection",7112,"CCGTD1_IPS",TT_Task,"58369",-,-,-,100,TK_Complete,27/06/2019,27/06/2019,16/07/2019,06/07/2019,"10HAD10-40 FS,10HAD10-80 FF","10HAD10-40,10HAD10-80","10HAD10-70 FS,HRS11.1200 FS,10HAD80-70 FS","10HAD10-70,HRS11.1200,10HAD80-70",204,240,206,242,47,56,48,56,64,,"CCGT D1_Integrated Programme Schedule;M&E;Construction;M&E Construction;HRSG (HA);(10HAD10) HRSG HP Steam",2,3,0.0000012007,0.0032553408,0.0107833164,19,1.0,0.0003169332,0.0136986301,0.0092307692,0.0018125,0.0083550914,0.0341055341,0.0426008969,1.0,0.0965753649
1.3.1.1.18.7-6,10HAD10-70,"Hydro Test with HRSG",7112,"CCGTD1_IPS",TT_Task,"58369",-,-,-,100,TK_Complete,02/09/2019,30/08/2019,12/09/2019,26/10/2019,"10HAD10-60 FS,ECS20.1200 FS","10HAD10-60,ECS20.1200","10HAD10-90 FS","10HAD10-90",213,250,215,258,49,58,50,60,74,,"CCGT D1_Integrated Programme Schedule;M&E;Construction;M&E Construction;HRSG (HA);(10HAD10) HRSG HP Steam",2,1,0.0000010869,0.0022380468,0.0134282808,10,0.0,0.0001810172,0.0136986301,0.0030769231,0.001640625,0.0057441253,0.0424710425,0.0224215247,0.0,0.0408840386
1.3.1.1.18.7-7,10HAD10-80,"Painting/Insulation",7112,"CCGTD1_IPS",TT_Task,"58369",-,-,-,100,TK_Complete,31/05/2019,31/05/2019,29/06/2019,22/11/2019,"10HAD10-20 FS","10HAD10-20","10HAD10-90 FF,10HAD10-60 FF","10HAD10-90,10HAD10-60",200,237,204,262,46,55,47,61,60,,"CCGT D1_Integrated Programme Schedule;M&E;Construction;M&E Construction;HRSG (HA);(10HAD10) HRSG HP Steam",1,2,0.0000040776,0.0034587996,0.01017294,29,0.0,0.0001203538,0.0068493151,0.0061538462,0.0061552083,0.0088772846,0.0321750322,0.0650224215,0.0,0.0160273201
1.3.1.1.18.7-8,10HAD10-90,"Pre-Commissioning/Flushing/Cleaning",7112,"CCGTD1_IPS",TT_Task,"58369",-,-,-,100,TK_Complete,24/10/2019,05/10/2019,05/11/2019,22/11/2019,"HRS11.1200 FS,10HAD10-80 FF,10HAD10-50 FF,10HAD10-70 FS","HRS11.1200,10HAD10-80,10HAD10-50,10HAD10-70","TOP1830 FS","TOP1830",221,255,222,262,51,59,52,61,80,,"CCGT D1_Integrated Programme Schedule;M&E;Construction;M&E Construction;HRSG (HA);(10HAD10) HRSG HP Steam",4,1,0.0000079068,0.002034588,0.01525941,12,0.0,0.0006089412,0.0273972603,0.0030769231,0.0119354167,0.0052219321,0.0482625483,0.0269058296,0.0,0.2162250937
1.3.1.1.18.8,58368,"(10HAD50) HRSG IP Steam",7112,"CCGTD1_IPS",WBS,"58365",,,,100,Complete,10/12/2018,09/11/2018,21/09/2019,22/11/2019,,,,,175,208,216,262,41,48,50,61,,,"CCGT D1_Integrated Programme Schedule;M&E;Construction;M&E Construction;HRSG (HA)"
1.3.1.1.18.8-1,10HAD50-20,"Install Large Bore Pipe/Valves/Supports",7112,"CCGTD1_IPS",TT_Task,"58368",-,-,-,100,TK_Complete,10/12/2018,09/11/2018,05/04/2019,22/05/2019,"SI1HAD4E40 FS,HRS10.1050 FS,SI1HAD4E25 FS,A2380 FS","SI1HAD4E40,HRS10.1050,SI1HAD4E25,A2380","ECS20.1200 FS,10HAD50-30 SS,10HAD50-40 FS,10HAD50-80 FS","ECS20.1200,10HAD50-30,10HAD50-40,10HAD50-80",175,208,192,235,41,48,44,55,42,,"CCGT D1_Integrated Programme Schedule;M&E;Construction;M&E Construction;HRSG (HA);(10HAD50) HRSG IP Steam",4,4,0.0000133345,0.00508647,0.0103763988,116,0.0,0.000162275,0.0273972603,0.0123076923,0.0201286458,0.0130548303,0.0328185328,0.2600896861,0.0,0.0332044832
1.3.1.1.18.8-2,10HAD50-50,"EC+I",7112,"CCGTD1_IPS",TT_Task,"58368",-,-,-,100,TK_Complete,15/06/2019,15/05/2019,27/07/2019,21/09/2019,"SI-BZK4-58 FS,10HAD50-30 FS,SI-BZK4-25 FS,SI1C--4-25 FS,EDS.1070 FS,SI1CJF4-25 FS","SI-BZK4-58,10HAD50-30,SI-BZK4-25,SI1C--4-25,EDS.1070,SI1CJF4-25","10HAD50-90 FS","10HAD50-90",202,234,208,253,47,54,48,59,63,,"CCGT D1_Integrated Programme Schedule;M&E;Construction;M&E Construction;HRSG (HA);(10HAD50) HRSG IP Steam",6,1,0.0000011624,0.0022380468,0.0118006104,42,0.0,0.0001752282,0.0410958904,0.0030769231,0.0017546875,0.0057441253,0.0373230373,0.0941704036,0.0,0.0385120212
1.3.1.1.18.8-3,10HAD50-30,"Install Small Bore Pipe/Valves/Supports",7112,"CCGTD1_IPS",TT_Task,"58368",-,-,-,100,TK_Complete,12/02/2019,09/11/2018,26/04/2019,14/06/2019,"10HAD50-20 SS,SI1HAD4E25 FS","10HAD50-20,SI1HAD4E25","10HAD50-40 FF,10HAD50-50 FS","10HAD50-40,10HAD50-50",184,208,195,239,43,48,45,55,47,,"CCGT D1_Integrated Programme Schedule;M&E;Construction;M&E Construction;HRSG (HA);(10HAD50) HRSG IP Steam",2,2,0.0000022493,0.0042726348,0.0105798576,73,0.0,0.0001482818,0.0136986301,0.0061538462,0.0033953125,0.0109660574,0.0334620335,0.16367713,0.0,0.0274707665
1.3.1.1.18.8-4,10HAD50-40,"NDE",7112,"CCGTD1_IPS",TT_Task,"58368",-,-,-,100,TK_Complete,05/03/2019,09/11/2018,24/04/2019,18/06/2019,"10HAD50-30 FF,10HAD50-20 FS","10HAD50-30,10HAD50-20","10HAD50-60 FS","10HAD50-60",187,208,195,239,43,48,45,55,48,,"CCGT D1_Integrated Programme Schedule;M&E;Construction;M&E Construction;HRSG (HA);(10HAD50) HRSG IP Steam",2,1,0.0000024842,0.0038657172,0.0107833164,50,0.0,0.0001909686,0.0136986301,0.0030769231,0.00375,0.009921671,0.0341055341,0.1121076233,0.0,0.0449616004
1.3.1.1.18.8-5,10HAD50-60,"Line Inspection",7112,"CCGTD1_IPS",TT_Task,"58368",-,-,-,100,TK_Complete,15/06/2019,15/06/2019,25/06/2019,25/06/2019,"10HAD50-40 FS","10HAD50-40","10HAD50-70 FS,HRS11.1200 FS,10HAD80-70 FS","10HAD50-70,HRS11.1200,10HAD80-70",202,239,203,240,47,55,47,56,63,,"CCGT D1_Integrated Programme Schedule;M&E;Construction;M&E Construction;HRSG (HA);(10HAD50) HRSG IP Steam",1,3,0.0000010351,0.0036622584,0.0109867752,10,1.0,0.0002438394,0.0068493151,0.0092307692,0.0015625,0.0093994778,0.0347490347,0.0224215247,1.0,0.0666253032
1.3.1.1.18.8-6,10HAD50-70,"Hydro Test with HRSG",7112,"CCGTD1_IPS",TT_Task,"58368",-,-,-,100,TK_Complete,28/06/2019,21/06/2019,13/07/2019,13/07/2019,"10HAD50-60 FS,ECS20.1200 FS","10HAD50-60,ECS20.1200","10HAD50-90 FS","10HAD50-90",204,240,206,243,47,56,48,56,64,,"CCGT D1_Integrated Programme Schedule;M&E;Construction;M&E Construction;HRSG (HA);(10HAD50) HRSG IP Steam",2,1,0.0000033951,0.0022380468,0.013224822,15,0.8,0.0001978965,0.0136986301,0.0030769231,0.005125,0.0057441253,0.0418275418,0.033632287,0.8,0.0478003186
1.3.1.1.18.8-7,10HAD50-80,"Painting/Insulation",7112,"CCGTD1_IPS",TT_Task,"58368",-,-,-,100,TK_Complete,15/06/2019,13/05/2019,17/07/2019,22/11/2019,"10HAD50-20 FS","10HAD50-20","10HAD50-90 FS","10HAD50-90",202,234,207,262,47,54,48,61,63,,"CCGT D1_Integrated Programme Schedule;M&E;Construction;M&E Construction;HRSG (HA);(10HAD50) HRSG IP Steam",1,1,0.0000027799,0.0022380468,0.0105798576,32,0.0,0.0001075538,0.0068493151,0.0030769231,0.0041963542,0.0057441253,0.0334620335,0.0717488789,0.0,0.0107825595
1.3.1.1.18.8-8,10HAD50-90,"Pre-Commissioning/Flushing/Cleaning",7112,"CCGTD1_IPS",TT_Task,"58368",-,-,-,100,TK_Complete,06/09/2019,07/09/2019,21/09/2019,22/11/2019,"10HAD50-80 FS,10HAD50-50 FS,10HAD50-70 FS","10HAD50-80,10HAD50-50,10HAD50-70","TOP1840 FS","TOP1840",214,251,216,262,50,58,50,61,75,,"CCGT D1_Integrated Programme Schedule;M&E;Construction;M&E Construction;HRSG (HA);(10HAD50) HRSG IP Steam",3,1,0.0000056813,0.002034588,0.0148524924,15,0.0,0.0004905016,0.0205479452,0.0030769231,0.0085760417,0.0052219321,0.046975547,0.033632287,0.0,0.1676947021
1.3.1.1.18.9,58367,"(10HAD80) HRSG LP Steam",7112,"CCGTD1_IPS",WBS,"58365",,,,100,Complete,10/12/2018,23/11/2018,09/10/2019,22/11/2019,,,,,175,210,219,262,41,49,51,61,,,"CCGT D1_Integrated Programme Schedule;M&E;Construction;M&E Construction;HRSG (HA)"
1.3.1.1.18.9-1,10HAD80-20,"Install Large Bore Pipe/Valves/Supports",7112,"CCGTD1_IPS",TT_Task,"58367",-,-,-,100,TK_Complete,10/12/2018,23/11/2018,05/04/2019,25/05/2019,"SI1HAD4E40 FS,HRS10.1050 FS,A2380 FS","SI1HAD4E40,HRS10.1050,A2380","10HAD80-30 FF,ECS20.1200 FS,10HAD80-40 SS,10HAD80-80 FS","10HAD80-30,ECS20.1200,10HAD80-40,10HAD80-80",175,210,192,236,41,49,44,55,42,,"CCGT D1_Integrated Programme Schedule;M&E;Construction;M&E Construction;HRSG (HA);(10HAD80) HRSG LP Steam",3,4,0.000012601,0.00508647,0.01017294,116,0.0,0.0001511331,0.0205479452,0.0123076923,0.0190215278,0.0130548303,0.0321750322,0.2600896861,0.0,0.0286390845
1.3.1.1.18.9-2,10HAD80-50,"EC+I",7112,"CCGTD1_IPS",TT_Task,"58367",-,-,-,100,TK_Complete,15/06/2019,18/05/2019,22/07/2019,21/09/2019,"SI1C--4-25 FS,SI-BZK4-58 FS,SI1CJF4-25 FS,EDS.1070 FS,SI-BZK4-25 FS,10HAD80-30 FS","SI1C--4-25,SI-BZK4-58,SI1CJF4-25,EDS.1070,SI-BZK4-25,10HAD80-30","10HAD80-90 FS","10HAD80-90",202,235,207,253,47,54,48,59,63,,"CCGT D1_Integrated Programme Schedule;M&E;Construction;M&E Construction;HRSG (HA);(10HAD80) HRSG LP Steam",6,1,0.0000009347,0.0022380468,0.0118006104,37,0.0,0.0001375659,0.0410958904,0.0030769231,0.0014109375,0.0057441253,0.0373230373,0.0829596413,0.0,0.0230799586
1.3.1.1.18.9-3,10HAD80-30,"Install Small Bore Pipe/Valves/Supports",7112,"CCGTD1_IPS",TT_Task,"58367",-,-,-,100,TK_Complete,21/02/2019,21/02/2019,07/05/2019,14/06/2019,"10HAD80-20 FF,SI1HAD4E25 FS","10HAD80-20,SI1HAD4E25","10HAD80-50 FS,10HAD80-40 FF,10HAD80-80 FS","10HAD80-50,10HAD80-40,10HAD80-80",186,222,196,239,43,52,45,55,47,,"CCGT D1_Integrated Programme Schedule;M&E;Construction;M&E Construction;HRSG (HA);(10HAD80) HRSG LP Steam",2,3,0.0000024076,0.0038657172,0.0105798576,75,0.0,0.0001319132,0.0136986301,0.0092307692,0.003634375,0.009921671,0.0334620335,0.168161435,0.0,0.0207637826
1.3.1.1.18.9-4,10HAD80-40,"NDE",7112,"CCGTD1_IPS",TT_Task,"58367",-,-,-,100,TK_Complete,25/01/2019,23/11/2018,07/05/2019,18/06/2019,"10HAD80-20 SS,10HAD80-30 FF","10HAD80-20,10HAD80-30","10HAD80-60 FS","10HAD80-60",182,210,196,239,42,49,45,55,44,,"CCGT D1_Integrated Programme Schedule;M&E;Construction;M&E Construction;HRSG (HA);(10HAD80) HRSG LP Steam",2,1,0.00000236,0.0032553408,0.0107833164,102,0.0,0.0002073485,0.0136986301,0.0030769231,0.0035625,0.0083550914,0.0341055341,0.2286995516,0.0,0.0516732359
1.3.1.1.18.9-5,10HAD80-60,"Line Inspection",7112,"CCGTD1_IPS",TT_Task,"58367",-,-,-,100,TK_Complete,07/06/2019,13/05/2019,12/06/2019,17/05/2019,"10HAD80-40 FS","10HAD80-40","10HAD80-70 FS,HRS11.1200 FS","10HAD80-70,HRS11.1200",201,234,202,235,46,54,47,54,62,,"CCGT D1_Integrated Programme Schedule;M&E;Construction;M&E Construction;HRSG (HA);(10HAD80) HRSG LP Steam",1,2,0.0000007867,0.003051882,0.0109867752,5,1.0,0.0002577803,0.0068493151,0.0061538462,0.0011875,0.0078328982,0.0347490347,0.0112107623,1.0,0.0723375743
1.3.1.1.18.9-6,10HAD80-70,"Hydro Test with HRSG",7112,"CCGTD1_IPS",TT_Task,"58367",-,-,-,100,TK_Complete,27/06/2019,18/05/2019,04/07/2019,25/05/2019,"10HAD80-60 FS,ECS20.1200 FS,10HAD50-60 FS,10HAD10-60 FS","10HAD80-60,ECS20.1200,10HAD50-60,10HAD10-60","10HAD80-90 FS","10HAD80-90",204,235,205,236,47,54,47,55,64,,"CCGT D1_Integrated Programme Schedule;M&E;Construction;M&E Construction;HRSG (HA);(10HAD80) HRSG LP Steam",4,1,0.0000026234,0.0022380468,0.0146490336,7,1.0,0.0002371039,0.0273972603,0.0030769231,0.0039600694,0.0057441253,0.0463320463,0.0156950673,1.0,0.0638654477
1.3.1.1.18.9-7,10HAD80-80,"Painting/Insulation",7112,"CCGTD1_IPS",TT_Task,"58367",-,-,-,100,TK_Complete,15/06/2019,18/05/2019,17/07/2019,22/11/2019,"10HAD80-30 FS,10HAD80-20 FS","10HAD80-30,10HAD80-20","10HAD80-90 FS","10HAD80-90",202,235,207,262,47,54,48,61,63,,"CCGT D1_Integrated Programme Schedule;M&E;Construction;M&E Construction;HRSG (HA);(10HAD80) HRSG LP Steam",2,1,0.0000025016,0.0022380468,0.0107833164,32,0.0,0.0001208026,0.0136986301,0.0030769231,0.0037762153,0.0057441253,0.0341055341,0.0717488789,0.0,0.0162112113
1.3.1.1.18.9-8,10HAD80-90,"Pre-Commissioning/Flushing/Cleaning",7112,"CCGTD1_IPS",TT_Task,"58367",-,-,-,100,TK_Complete,25/09/2019,07/09/2019,09/10/2019,22/11/2019,"HRS11.1200 FS,10HAD80-50 FS,10HAD80-70 FS,10HAD80-80 FS","HRS11.1200,10HAD80-50,10HAD80-70,10HAD80-80","TOP1850 FS","TOP1850",217,251,219,262,50,58,51,61,77,,"CCGT D1_Integrated Programme Schedule;M&E;Construction;M&E Construction;HRSG (HA);(10HAD80) HRSG LP Steam",4,1,0.0000069648,0.002034588,0.0164801628,14,0.0,0.0007650323,0.0273972603,0.0030769231,0.0105135417,0.0052219321,0.0521235521,0.0313901345,0.0,0.280183139
1.3.1.1.18.10,58366,"HRSG Main - Columns, Casings, Modules, Drums, Ducts",7112,"CCGTD1_IPS",WBS,"58365",,,,100,Complete,06/03/2018,12/03/2018,24/10/2019,29/11/2019,,,,,135,173,221,263,31,40,51,61,,,"CCGT D1_Integrated Programme Schedule;M&E;Construction;M&E Construction;HRSG (HA)"
1.3.1.1.18.10-1,A2380,"Erection Main Piperack Structure (UMY00Y Modules)",7112,"CCGTD1_IPS",TT_Task,"58366",-,-,-,100,TK_Complete,20/11/2018,07/11/2018,07/12/2018,30/11/2018,"SI1UMY4-42 FS,KD_D06 FS,SI1HB-4C25 FS,HRS10.1080 FS","SI1UMY4-42,KD_D06,SI1HB-4C25,HRS10.1080","00GHC-02-20 FS,10LBA80-20 FS,10PGB1020 FS,10HAA20 FS,10LBC20 FS,10LBG20 FS,10LAB20 FS,00LBG20 FS,10LBA10-20 FS,10LCA-02-20 FS,10LCA30 FS,10HAD80-20 FS,10HAD50-20 FS,10HAD10-20 FS,10HAA10 FS","00GHC-02-20,10LBA80-20,10PGB1020,10HAA20,10LBC20,10LBG20,10LAB20,00LBG20,10LBA10-20,10LCA-02-20,10LCA30,10HAD80-20,10HAD50-20,10HAD10-20,10HAA10",172,207,175,211,40,48,40,49,38,,"CCGT D1_Integrated Programme Schedule;M&E;Construction;M&E Construction;HRSG (HA);HRSG Main - Columns, Casings, Modules, Drums, Ducts",4,15,0.0000265779,0.0366225839,0.001017294,17,0.8,0.0002319251,0.0273972603,0.0461538462,0.0401197917,0.0939947781,0.0032175032,0.0381165919,0.8,0.0617434544
1.3.1.1.18.10-2,HRS09.1020,"Installation of Main Steel Structure HRSG (Main Frame / Casing) without PWHT of roof beams",7112,"CCGTD1_IPS",TT_Task,"58366",-,-,-,100,TK_Complete,03/04/2018,06/04/2018,13/06/2018,22/06/2018,"HRS09.1030 SS,SI1HB-4A40 FS,SI1HB-4A25 FS,SC1010-2 FS","HRS09.1030,SI1HB-4A40,SI1HB-4A25,SC1010-2","HRS12.1000 FS,HRS10.1010 FS,A3330 SS,ECS20.1180 FS,ECS20.1220 FS","HRS12.1000,HRS10.1010,A3330,ECS20.1180,ECS20.1220",139,177,150,188,32,41,35,43,24,,"CCGT D1_Integrated Programme Schedule;M&E;Construction;M&E Construction;HRSG (HA);HRSG Main - Columns, Casings, Modules, Drums, Ducts",4,4,0.0001021848,0.0177009156,0.006103764,71,0.4,0.0007714246,0.0273972603,0.0123076923,0.15425,0.0454308094,0.0193050193,0.1591928251,0.4,0.282802368
1.3.1.1.18.10-3,HRS10.1010,"First Del to pad of Modules (Heating Surfaces)",7112,"CCGTD1_IPS",TT_Mile,"58366",-,-,-,100,TK_Complete,20/07/2018,24/07/2018,20/07/2018,24/07/2018,"SI1HA-4C25 FS,KD_B03 FS,HRS10.1060 FS,HRS09.1020 FS","SI1HA-4C25,KD_B03,HRS10.1060,HRS09.1020","HRS10.1020 FS","HRS10.1020",155,192,155,192,36,44,36,44,32,,"CCGT D1_Integrated Programme Schedule;M&E;Construction;M&E Construction;HRSG (HA);HRSG Main - Columns, Casings, Modules, Drums, Ducts",4,1,0.000059111,0.0156663276,0.0075279756,0,1.0,0.0000812387,0.0273972603,0.0030769231,0.0892291667,0.0402088773,0.0238095238,0.0,1.0,0.0
1.3.1.1.18.10-4,HRS10.1020,"Alignment and Installation of Modules (Heating Surfaces)",7112,"CCGTD1_IPS",TT_Task,"58366",-,-,-,100,TK_Complete,20/07/2018,27/07/2018,20/08/2018,08/09/2018,"HRS10.1010 FS,SI1HA-4C25 FS,SC1090 FS,KD_B03 FS,HRS10.1020a FF","HRS10.1010,SI1HA-4C25,SC1090,KD_B03,HRS10.1020a","HRS10.1070 FS,ECS20.1100 FS,HRS12.1000 FS,HRS10.1050 FS","HRS10.1070,ECS20.1100,HRS12.1000,HRS10.1050",155,193,159,199,36,45,37,46,32,,"CCGT D1_Integrated Programme Schedule;M&E;Construction;M&E Construction;HRSG (HA);HRSG Main - Columns, Casings, Modules, Drums, Ducts",5,4,0.000075224,0.0154628688,0.008138352,31,0.0,0.0004270238,0.0342465753,0.0123076923,0.1135520833,0.0396866841,0.0257400257,0.0695067265,0.0,0.141684786
1.3.1.1.18.10-5,HRS10.1050,"Installation of  Supports & Drums of HRSG",7112,"CCGTD1_IPS",TT_Task,"58366",-,-,-,100,TK_Complete,15/10/2018,20/09/2018,25/10/2018,27/10/2018,"SI1HA-4D25 FS,SI1HA-4D40 FS,HRS10.1020 FS","SI1HA-4D25,SI1HA-4D40,HRS10.1020","HRS12.1000 FS,10LCL20 FS,A1900 FS,10HAD80-20 FS,10HAD50-20 FS,HRS11.1170 FS,ECS20.1190 FS","HRS12.1000,10LCL20,A1900,10HAD80-20,10HAD50-20,HRS11.1170,ECS20.1190",167,200,169,206,39,46,39,48,37,,"CCGT D1_Integrated Programme Schedule;M&E;Construction;M&E Construction;HRSG (HA);HRSG Main - Columns, Casings, Modules, Drums, Ducts",3,7,0.000059226,0.0120040692,0.0087487284,10,0.0,0.0002528921,0.0205479452,0.0215384615,0.0894027778,0.0308093995,0.0276705277,0.0224215247,0.0,0.0703346365
1.3.1.1.18.10-6,HRS11.1170,"Installation of HRSG Piping",7112,"CCGTD1_IPS",TT_Task,"58366",-,-,-,100,TK_Complete,06/11/2018,07/11/2018,13/05/2019,28/05/2019,"SI1HAD4E25 FS,SI1HAD4E40 FS,HRS10.1050 FS","SI1HAD4E25,SI1HAD4E40,HRS10.1050","ECS20.1200 FS,ECS20.1080 FF,10LCL20 FS,A1910 FF","ECS20.1200,ECS20.1080,10LCL20,A1910",170,207,197,236,39,48,46,55,38,,"CCGT D1_Integrated Programme Schedule;M&E;Construction;M&E Construction;HRSG (HA);HRSG Main - Columns, Casings, Modules, Drums, Ducts",3,4,0.0000101322,0.0079348932,0.0093591048,188,0.0,0.0001787469,0.0205479452,0.0123076923,0.0152947917,0.0203655352,0.0296010296,0.4215246637,0.0,0.0399537836
1.3.1.1.18.10-7,HRS09.1030,"Preparation of Foundations and installation of Sole Plates",7112,"CCGTD1_IPS",TT_Task,"58366",-,-,-,100,TK_Complete,06/03/2018,12/03/2018,15/03/2018,23/04/2018,"KD_B01 FS,SUB-HRSG-180 FS,SC1020-2 FS,SC1020-4 FS,SC1020-1 FS,SC1020-5 FS,SC1020-3 FS,HRS10.1090 FF","KD_B01,SUB-HRSG-180,SC1020-2,SC1020-4,SC1020-1,SC1020-5,SC1020-3,HRS10.1090","HRS09.1020 SS,S1060 SS","HRS09.1020,S1060",135,173,137,179,31,40,32,41,21,,"CCGT D1_Integrated Programme Schedule;M&E;Construction;M&E Construction;HRSG (HA);HRSG Main - Columns, Casings, Modules, Drums, Ducts",8,1,0.0000850022,0.0179043744,0.00508647,9,0.0,0.0005672413,0.0547945205,0.0030769231,0.1283125,0.0459530026,0.0160875161,0.0201793722,0.0,0.1991386166
1.3.1.1.18.10-8,HRS10.1060,"HRSG Structure Ready for Modules & Drums",7112,"CCGTD1_IPS",TT_Mile,"58366",-,-,-,100,TK_Complete,26/06/2018,26/06/2018,26/06/2018,26/06/2018,"SI1HA-4C40 FS,KD_B03 FS,SI1HA-4C25 FS,ECS20.1220 FS,ECS20.1230 FS","SI1HA-4C40,KD_B03,SI1HA-4C25,ECS20.1220,ECS20.1230","HRS10.1010 FS,10HAD10-20 FS,ECS20.1190 FS","HRS10.1010,10HAD10-20,ECS20.1190",151,188,151,188,35,44,35,44,31,,"CCGT D1_Integrated Programme Schedule;M&E;Construction;M&E Construction;HRSG (HA);HRSG Main - Columns, Casings, Modules, Drums, Ducts",5,3,0.0000318258,0.0158697864,0.0073245168,0,1.0,0.0000812387,0.0342465753,0.0092307692,0.0480416667,0.0407310705,0.0231660232,0.0,1.0,0.0
1.3.1.1.18.10-9,HRS10.1070,"Modules Welding",7112,"CCGTD1_IPS",TT_Task,"58366",-,-,-,100,TK_Complete,06/11/2018,01/11/2018,28/11/2018,30/11/2018,"HRS10.1020 FS","HRS10.1020","10HAD10-20 FS","10HAD10-20",170,206,174,211,39,48,40,49,38,,"CCGT D1_Integrated Programme Schedule;M&E;Construction;M&E Construction;HRSG (HA);HRSG Main - Columns, Casings, Modules, Drums, Ducts",1,1,0.0000018494,0.006103764,0.0083418108,22,0.2,0.0001545852,0.0068493151,0.0030769231,0.0027916667,0.0156657963,0.0263835264,0.0493273543,0.2,0.0300535886
1.3.1.1.18.10-10,ECS20.1100,"Erection of Boiler Platforms and Ladders",7112,"CCGTD1_IPS",TT_Task,"58366",-,-,-,100,TK_Complete,17/10/2018,15/09/2018,28/12/2018,25/03/2019,"HRS10.1020 FS,HRS10.1080 FS,HRS10.1100 FF","HRS10.1020,HRS10.1080,HRS10.1100","ECS20.1110 FS,ECS20.1200 FS,ECS20.1070 FS,ECS20.1050 FS","ECS20.1110,ECS20.1200,ECS20.1070,ECS20.1050",168,200,178,227,39,46,41,53,37,,"CCGT D1_Integrated Programme Schedule;M&E;Construction;M&E Construction;HRSG (HA);HRSG Main - Columns, Casings, Modules, Drums, Ducts",3,4,0.0000163361,0.00508647,0.0089521872,72,0.0,0.0004369744,0.0205479452,0.0123076923,0.0246597222,0.0130548303,0.0283140283,0.1614349776,0.0,0.1457620154
1.3.1.1.18.10-11,ECS20.1180,"Erection of Inlet Duct",7112,"CCGTD1_IPS",TT_Task,"58366",-,-,-,100,TK_Complete,11/10/2018,16/10/2018,09/01/2019,29/03/2019,"KD_B01 FS,HRS09.1020 FS,HRS10.1110 FS","KD_B01,HRS09.1020,HRS10.1110","10MBR1020 FS","10MBR1020",167,204,180,228,39,47,42,53,37,,"CCGT D1_Integrated Programme Schedule;M&E;Construction;M&E Construction;HRSG (HA);HRSG Main - Columns, Casings, Modules, Drums, Ducts",3,1,0.0000065936,0.0026449644,0.0065106816,90,0.0,0.0007020285,0.0205479452,0.0030769231,0.009953125,0.0067885117,0.0205920206,0.201793722,0.0,0.2543674361
1.3.1.1.18.10-12,ECS20.1200,"Pressure Test Walkdowns and Prep",7112,"CCGTD1_IPS",TT_Task,"58366",-,-,-,100,TK_Complete,14/06/2019,14/05/2019,27/06/2019,19/10/2019,"A1910 FS,10HAD80-20 FS,10HAD50-20 FS,ECS20.1100 FS,10HAD10-20 FS,HRS11.1170 FS","A1910,10HAD80-20,10HAD50-20,ECS20.1100,10HAD10-20,HRS11.1170","HRS11.1200 FS,10HAD50-70 FS,10HAD80-70 FS,10HAD10-70 FS","HRS11.1200,10HAD50-70,10HAD80-70,10HAD10-70",202,234,204,257,47,54,47,60,63,,"CCGT D1_Integrated Programme Schedule;M&E;Construction;M&E Construction;HRSG (HA);HRSG Main - Columns, Casings, Modules, Drums, Ducts",6,4,0.0000174816,0.0038657172,0.0124109868,13,0.0,0.0001939261,0.0410958904,0.0123076923,0.0263888889,0.009921671,0.0392535393,0.0291479821,0.0,0.0461734393
1.3.1.1.18.10-13,HRS11.1200,"Reconfigure Post Hydro Test",7112,"CCGTD1_IPS",TT_Task,"58366",-,-,-,100,TK_Complete,02/10/2019,19/10/2019,24/10/2019,29/11/2019,"ECS20.1200 FS,10HAD80-60 FS,10HAD50-60 FS,10HAD10-60 FS","ECS20.1200,10HAD80-60,10HAD50-60,10HAD10-60","10HAD10-90 FS,10HAD80-90 FS","10HAD10-90,10HAD80-90",218,257,221,263,50,60,51,61,78,,"CCGT D1_Integrated Programme Schedule;M&E;Construction;M&E Construction;HRSG (HA);HRSG Main - Columns, Casings, Modules, Drums, Ducts",4,2,0.0000048282,0.0026449644,0.0146490336,22,0.0,0.0005711006,0.0273972603,0.0061538462,0.0072881944,0.0067885117,0.0463320463,0.0493273543,0.0,0.2007199785
1.3.1.1.18.10-14,HRS12.1000,"Completion of the HRSG ready to start Piping",7112,"CCGTD1_IPS",TT_Task,"58366",-,-,-,100,TK_Complete,19/10/2018,12/10/2018,24/10/2018,24/10/2018,"HRS10.1050 FS,HRS09.1020 FS,HRS10.1020 FS","HRS10.1050,HRS09.1020,HRS10.1020","SC1100 FS,SC1120 FS","SC1100,SC1120",168,204,169,205,39,47,39,48,37,,"CCGT D1_Integrated Programme Schedule;M&E;Construction;M&E Construction;HRSG (HA);HRSG Main - Columns, Casings, Modules, Drums, Ducts",3,2,0.0000149054,0.002034588,0.0089521872,5,0.4,0.000129048,0.0205479452,0.0061538462,0.0225,0.0052219321,0.0283140283,0.0112107623,0.4,0.0195897575
1.3.1.1.18.10-15,A1900,"Set on Base Boiler Blowdown Vessel",7112,"CCGTD1_IPS",TT_Task,"58366",-,-,-,100,TK_Complete,13/11/2018,06/11/2018,13/11/2018,08/11/2018,"KD_B01 FS,KD_D05 FS,KD_D06 FS,HRS10.1050 FS,HRS10.1080 FS","KD_B01,KD_D05,KD_D06,HRS10.1050,HRS10.1080","A1910 FS","A1910",171,207,171,207,40,48,40,48,38,,"CCGT D1_Integrated Programme Schedule;M&E;Construction;M&E Construction;HRSG (HA);HRSG Main - Columns, Casings, Modules, Drums, Ducts",5,1,0.0000059622,0.0056968464,0.0095625636,0,0.4,0.0000812387,0.0342465753,0.0030769231,0.009,0.0146214099,0.0302445302,0.0,0.4,0.0
1.3.1.1.18.10-16,A1910,"Tie In Works to BD Vessel",7112,"CCGTD1_IPS",TT_Task,"58366",-,-,-,100,TK_Complete,06/05/2019,06/05/2019,28/05/2019,13/06/2019,"KD_D05 FS,KD_B01 FS,A1900 FS,HRS11.1170 FF","KD_D05,KD_B01,A1900,HRS11.1170","ECS20.1200 FS,CP-BZK7H25 FS","ECS20.1200,CP-BZK7H25",196,233,199,238,45,54,46,55,57,,"CCGT D1_Integrated Programme Schedule;M&E;Construction;M&E Construction;HRSG (HA);HRSG Main - Columns, Casings, Modules, Drums, Ducts",4,2,0.0000137254,0.0054933876,0.0103763988,22,0.0,0.0002333433,0.0273972603,0.0061538462,0.02071875,0.0140992167,0.0328185328,0.0493273543,0.0,0.0623245581
1.3.1.1.18.10-17,HRS10.1080,"Civil Contractor H/O West Side of HRSG back",7112,"CCGTD1_IPS",TT_FinMile,"58366",-,-,-,100,TK_Complete,06/11/2018,06/11/2018,06/11/2018,06/11/2018,"KD_D06 FS","KD_D06","A2380 FS,ECS20.1100 FS,10MBA4x10 FS,A1900 FS,10LAC05 FS","A2380,ECS20.1100,10MBA4x10,A1900,10LAC05",170,207,170,207,39,48,39,48,38,,"CCGT D1_Integrated Programme Schedule;M&E;Construction;M&E Construction;HRSG (HA);HRSG Main - Columns, Casings, Modules, Drums, Ducts",1,5,0.0000001035,0.0437436419,0.0004069176,0,1.0,0.0000812387,0.0068493151,0.0153846154,0.00015625,0.1122715405,0.0012870013,0.0,1.0,0.0
1.3.1.1.18.10-18,ECS20.1220,"PWHT HRSG Casing roof beams",7112,"CCGTD1_IPS",TT_Task,"58366",-,-,-,100,TK_Complete,26/06/2018,23/06/2018,12/07/2018,14/07/2018,"HRS09.1020 FS","HRS09.1020","HRS10.1060 FS,SC1090 FS,ECS20.1230 SS","HRS10.1060,SC1090,ECS20.1230",151,188,154,191,35,43,35,44,31,,"CCGT D1_Integrated Programme Schedule;M&E;Construction;M&E Construction;HRSG (HA);HRSG Main - Columns, Casings, Modules, Drums, Ducts",1,3,0.0000276302,0.0164801628,0.0063072228,16,0.6,0.0001759229,0.0068493151,0.0092307692,0.0417083333,0.0422976501,0.0199485199,0.0358744395,0.6,0.0387966785
1.3.1.1.18.10-19,HRS10.1090,"Punchlist & Final Completion of HRSG Foundation Works - Prepare Pockets for GL11 Sole Plates",7112,"CCGTD1_IPS",TT_FinMile,"58366",-,-,-,100,TK_Complete,24/07/2018,18/04/2018,24/07/2018,18/04/2018,"","","HRS09.1030 FF","HRS09.1030",155,178,155,178,36,41,36,41,32,,"CCGT D1_Integrated Programme Schedule;M&E;Construction;M&E Construction;HRSG (HA);HRSG Main - Columns, Casings, Modules, Drums, Ducts",0,1,0.0,0.0181078332,0.0,0,1.0,0.0000812387,0.0,0.0030769231,0.0,0.0464751958,0.0,0.0,1.0,0.0
1.3.1.1.18.10-20,HRS10.1100,"Erect Stair Towers",7112,"CCGTD1_IPS",TT_Task,"58366",-,-,-,100,TK_Complete,26/05/2018,11/06/2018,19/07/2018,29/10/2018,"","","ECS20.1100 FF","ECS20.1100",147,186,155,206,34,43,36,48,28,,"CCGT D1_Integrated Programme Schedule;M&E;Construction;M&E Construction;HRSG (HA);HRSG Main - Columns, Casings, Modules, Drums, Ducts",0,1,0.0,0.0052899288,0.0,54,0.0,0.0000812387,0.0,0.0030769231,0.0,0.0135770235,0.0,0.1210762332,0.0,0.0
1.3.1.1.18.10-21,ECS20.1230,"Completion Works at Roof Beams - NDE, Roof Beam Seam Welds, Painting, Insulation + Liner Plates, Modify",7112,"CCGTD1_IPS",TT_Task,"58366",-,-,-,100,TK_Complete,09/07/2018,15/07/2018,19/07/2018,26/07/2018,"ECS20.1220 SS","ECS20.1220","HRS10.1060 FS,SC1090 FS","HRS10.1060,SC1090",153,191,155,192,35,44,36,45,32,,"CCGT D1_Integrated Programme Schedule;M&E;Construction;M&E Construction;HRSG (HA);HRSG Main - Columns, Casings, Modules, Drums, Ducts",1,2,0.0,0.016276704,0.0065106816,10,1.0,0.0002310863,0.0068493151,0.0061538462,0.0,0.0417754569,0.0205920206,0.0224215247,1.0,0.0613997486
1.3.1.1.18.10-22,HRS10.1020a,"Resolve Row 2 Support Beam Issue / SPMT Working on Stack Delivery",7112,"CCGTD1_IPS",TT_Task,"58366",-,-,-,100,TK_Complete,30/08/2018,18/08/2018,15/09/2018,31/08/2018,"","","HRS10.1020 FF","HRS10.1020",161,196,163,198,37,45,38,46,36,,"CCGT D1_Integrated Programme Schedule;M&E;Construction;M&E Construction;HRSG (HA);HRSG Main - Columns, Casings, Modules, Drums, Ducts",0,1,0.0,0.0156663276,0.0,16,1.0,0.0000812387,0.0,0.0030769231,0.0,0.0402088773,0.0,0.0358744395,1.0,0.0
1.3.1.1.18.10-23,HRS10.1110,"Civil Contractor H/O Inlet Duct Foundation",7112,"CCGTD1_IPS",TT_FinMile,"58366",-,-,-,100,TK_Complete,06/11/2018,15/10/2018,06/11/2018,15/10/2018,"","","ECS20.1180 FS","ECS20.1180",170,204,170,204,39,47,39,47,38,,"CCGT D1_Integrated Programme Schedule;M&E;Construction;M&E Construction;HRSG (HA);HRSG Main - Columns, Casings, Modules, Drums, Ducts",0,1,0.0,0.0028484232,0.0,0,1.0,0.0000812387,0.0,0.0030769231,0.0,0.007310705,0.0,0.0,1.0,0.0
1.3.1.1.19,58347,"Gas Turbine (MB)",7112,"CCGTD1_IPS",WBS,"58325",,,,100,Complete,30/08/2018,08/08/2018,04/11/2019,08/01/2020,,,,,161,194,222,268,37,45,51,62,,,"CCGT D1_Integrated Programme Schedule;M&E;Construction;M&E Construction"
1.3.1.1.19.1,58364,"(10CYE) Fire Detection System for GT Noise Enlcosure MPB",7112,"CCGTD1_IPS",WBS,"58347",,,,100,Complete,01/07/2019,13/07/2019,11/09/2019,08/01/2020,,,,,204,243,215,268,47,56,50,62,,,"CCGT D1_Integrated Programme Schedule;M&E;Construction;M&E Construction;Gas Turbine (MB)"
1.3.1.1.19.1-1,FSS22.1180,"Installation of Fire Detection System for GT Noise Enclosure MPB",7112,"CCGTD1_IPS",TT_Task,"58364",-,-,-,100,TK_Complete,01/07/2019,13/07/2019,11/09/2019,08/01/2020,"10MBA1067 FS","10MBA1067","TOP2370 FS,S1040 FF","TOP2370,S1040",204,243,215,268,47,56,50,62,65,,"CCGT D1_Integrated Programme Schedule;M&E;Construction;M&E Construction;Gas Turbine (MB);(10CYE) Fire Detection System for GT Noise Enlcosure MPB",1,1,0.0,0.0022380468,0.0008138352,72,0.0,0.0001331727,0.0068493151,0.0030769231,0.0,0.0057441253,0.0025740026,0.1614349776,0.0,0.0212798315
1.3.1.1.19.2,58363,"(10SAM30) Ventilation System For GT Enclosure and Skid Enclosures",7112,"CCGTD1_IPS",WBS,"58347",,,,100,Complete,30/04/2019,09/05/2019,28/06/2019,26/09/2019,,,,,195,233,204,253,45,54,47,59,,,"CCGT D1_Integrated Programme Schedule;M&E;Construction;M&E Construction;Gas Turbine (MB)"
1.3.1.1.19.2-1,TWS06.2520,"Installation of Ventilation System for Gas Turbine Enclosure and Skid Enclosures",7112,"CCGTD1_IPS",TT_Task,"58363",-,-,-,100,TK_Complete,30/04/2019,09/05/2019,28/06/2019,26/09/2019,"10MBA1067 FS","10MBA1067","TOP1380 FS,SC1220 FS","TOP1380,SC1220",195,233,204,253,45,54,47,59,55,,"CCGT D1_Integrated Programme Schedule;M&E;Construction;M&E Construction;Gas Turbine (MB);(10SAM30) Ventilation System For GT Enclosure and Skid Enclosures",1,2,0.0000006211,0.0028484232,0.0008138352,59,0.0,0.0001237957,0.0068493151,0.0061538462,0.0009375,0.007310705,0.0025740026,0.1322869955,0.0,0.0174376397
1.3.1.1.19.3,58362,"(10QFB) Control Air System for ST",7112,"CCGTD1_IPS",WBS,"58347",,,,100,Complete,04/05/2019,02/01/2019,12/08/2019,12/11/2019,,,,,196,215,210,260,45,50,49,60,,,"CCGT D1_Integrated Programme Schedule;M&E;Construction;M&E Construction;Gas Turbine (MB)"
1.3.1.1.19.3-1,10QFB20,"Install Large Bore Pipe/Valves/Supports",7112,"CCGTD1_IPS",TT_Task,"58362",-,-,-,100,TK_Complete,04/05/2019,02/01/2019,22/06/2019,06/07/2019,"10QFB10 FS,SI1--P4A40 FS,SI1--P4H40 FS","10QFB10,SI1--P4A40,SI1--P4H40","10QFB50 FS,10QFB30 FF,10QFB80 FS,10QFB80 FF","10QFB50,10QFB30,10QFB80,10QFB80",196,215,203,242,45,50,47,56,57,,"CCGT D1_Integrated Programme Schedule;M&E;Construction;M&E Construction;Gas Turbine (MB);(10QFB) Control Air System for ST",3,3,0.0000019046,0.0038657172,0.0008138352,49,0.0,0.0001528989,0.0205479452,0.0092307692,0.002875,0.009921671,0.0025740026,0.1098654709,0.0,0.0293626347
1.3.1.1.19.3-2,10QFB50,"EC+I",7112,"CCGTD1_IPS",TT_Task,"58362",-,-,-,100,TK_Complete,18/07/2019,10/07/2019,09/08/2019,27/07/2019,"10QFB20 FS","10QFB20","","",207,242,210,245,48,56,49,57,66,,"CCGT D1_Integrated Programme Schedule;M&E;Construction;M&E Construction;Gas Turbine (MB);(10QFB) Control Air System for ST",1,0,0.0,0.0,0.001017294,22,1.0,0.0001408841,0.0068493151,0.0,0.0,0.0,0.0032175032,0.0493273543,1.0,0.0244395834
1.3.1.1.19.3-3,10QFB70,"Hydro Test",7112,"CCGTD1_IPS",TT_Task,"58362",-,-,-,100,TK_Complete,31/07/2019,22/06/2019,03/08/2019,29/06/2019,"10QFB60 FS","10QFB60","10QFB90 FS","10QFB90",209,240,209,241,48,56,48,56,67,,"CCGT D1_Integrated Programme Schedule;M&E;Construction;M&E Construction;Gas Turbine (MB);(10QFB) Control Air System for ST",1,1,0.0000016148,0.0026449644,0.0016276704,3,0.8,0.0002811914,0.0068493151,0.0030769231,0.0024375,0.0067885117,0.0051480051,0.0067264574,0.8,0.0819302196
1.3.1.1.19.3-4,10QFB80,"Painting/Insulation",7112,"CCGTD1_IPS",TT_Task,"58362",-,-,-,100,TK_Complete,13/07/2019,13/07/2019,26/07/2019,26/07/2019,"10QFB20 FS,10QFB20 FF","10QFB20,10QFB20","10QFB90 FS","10QFB90",206,243,208,245,48,56,48,57,66,,"CCGT D1_Integrated Programme Schedule;M&E;Construction;M&E Construction;Gas Turbine (MB);(10QFB) Control Air System for ST",1,1,0.0000014491,0.0026449644,0.001017294,13,1.0,0.0001164837,0.0068493151,0.0030769231,0.0021875,0.0067885117,0.0032175032,0.0291479821,1.0,0.014441572
1.3.1.1.19.3-5,10QFB10,"Install Equipment/Skids/Pumps",7112,"CCGTD1_IPS",TT_Task,"58362",-,-,-,100,TK_Complete,29/06/2019,29/06/2019,05/07/2019,05/07/2019,"","","10QFB20 FS","10QFB20",204,241,205,242,47,56,47,56,65,,"CCGT D1_Integrated Programme Schedule;M&E;Construction;M&E Construction;Gas Turbine (MB);(10QFB) Control Air System for ST",0,1,0.0,0.004069176,0.0,6,1.0,0.0000812387,0.0,0.0030769231,0.0,0.0104438642,0.0,0.0134529148,1.0,0.0
1.3.1.1.19.3-6,10QFB30,"Install Small Bore Pipe/Valves/Supports",7112,"CCGTD1_IPS",TT_Task,"58362",-,-,-,100,TK_Complete,04/07/2019,04/07/2019,17/07/2019,17/07/2019,"10QFB20 FF","10QFB20","10QFB40 FF","10QFB40",205,241,207,243,47,56,48,56,65,,"CCGT D1_Integrated Programme Schedule;M&E;Construction;M&E Construction;Gas Turbine (MB);(10QFB) Control Air System for ST",1,1,0.0000006211,0.0032553408,0.001017294,13,1.0,0.0001164837,0.0068493151,0.0030769231,0.0009375,0.0083550914,0.0032175032,0.0291479821,1.0,0.014441572
1.3.1.1.19.3-7,10QFB40,"NDE",7112,"CCGTD1_IPS",TT_Task,"58362",-,-,-,100,TK_Complete,10/07/2019,10/07/2019,17/07/2019,19/07/2019,"10QFB30 FF","10QFB30","10QFB60 FF","10QFB60",206,242,207,244,48,56,48,56,66,,"CCGT D1_Integrated Programme Schedule;M&E;Construction;M&E Construction;Gas Turbine (MB);(10QFB) Control Air System for ST",1,1,0.0000010351,0.003051882,0.0012207528,7,0.8,0.0001804034,0.0068493151,0.0030769231,0.0015625,0.0078328982,0.0038610039,0.0156950673,0.8,0.040632536
1.3.1.1.19.3-8,10QFB60,"Line Inspection",7112,"CCGTD1_IPS",TT_Task,"58362",-,-,-,100,TK_Complete,10/07/2019,10/07/2019,17/07/2019,17/07/2019,"10QFB40 FF","10QFB40","10QFB70 FS","10QFB70",206,242,207,243,48,56,48,56,66,,"CCGT D1_Integrated Programme Schedule;M&E;Construction;M&E Construction;Gas Turbine (MB);(10QFB) Control Air System for ST",1,1,0.0000013663,0.0028484232,0.0014242116,7,1.0,0.0002348185,0.0068493151,0.0030769231,0.0020625,0.007310705,0.0045045045,0.0156950673,1.0,0.0629290047
1.3.1.1.19.3-9,10QFB90,"Pre-Commissioning/Flushing/Cleaning",7112,"CCGTD1_IPS",TT_Task,"58362",-,-,-,100,TK_Complete,05/08/2019,29/06/2019,12/08/2019,12/11/2019,"10QFB80 FS,10QFB70 FS","10QFB80,10QFB70","TOP1190 FS","TOP1190",209,241,210,260,48,56,49,60,69,,"CCGT D1_Integrated Programme Schedule;M&E;Construction;M&E Construction;Gas Turbine (MB);(10QFB) Control Air System for ST",2,1,0.0000037264,0.0024415056,0.002034588,7,0.0,0.0004198724,0.0136986301,0.0030769231,0.005625,0.0062663185,0.0064350064,0.0156950673,0.0,0.1387544896
1.3.1.1.19.4,58361,"(10MBA18) Compressor Cleaning Package",7112,"CCGTD1_IPS",WBS,"58347",,,,100,Complete,31/10/2018,26/10/2018,12/09/2019,12/10/2019,,,,,170,206,215,256,39,48,50,59,,,"CCGT D1_Integrated Programme Schedule;M&E;Construction;M&E Construction;Gas Turbine (MB)"
1.3.1.1.19.4-1,10MBA18-100,"Set Compressor Cleaning Package into Position -Skid",7112,"CCGTD1_IPS",TT_Task,"58361",-,-,-,100,TK_Complete,31/10/2018,26/10/2018,05/11/2018,30/10/2018,"SI1MB-4E25 FS,Sub-GTST-180 FS,10MBA1000 FS,KD_C04 FS","SI1MB-4E25,Sub-GTST-180,10MBA1000,KD_C04","10MBA18-110 FS","10MBA18-110",170,206,170,206,39,48,39,48,38,,"CCGT D1_Integrated Programme Schedule;M&E;Construction;M&E Construction;Gas Turbine (MB);(10MBA18) Compressor Cleaning Package",4,1,0.0000090675,0.0044760936,0.0038657172,5,1.0,0.0000943626,0.0273972603,0.0030769231,0.0136875,0.0114882507,0.0122265122,0.0112107623,1.0,0.0053774887
1.3.1.1.19.4-2,10MBA18-120,"Install Large Bore Pipe/Valves/Supports",7112,"CCGTD1_IPS",TT_Task,"58361",-,-,-,100,TK_Complete,01/04/2019,01/04/2019,06/05/2019,05/09/2019,"","","10MBA18-130 FS,10MBA18-140 SS","10MBA18-130,10MBA18-140",191,228,196,250,44,53,45,58,50,,"CCGT D1_Integrated Programme Schedule;M&E;Construction;M&E Construction;Gas Turbine (MB);(10MBA18) Compressor Cleaning Package",0,2,0.0,0.0036622584,0.0,35,0.0,0.0000812387,0.0,0.0061538462,0.0,0.0093994778,0.0,0.0784753363,0.0,0.0
1.3.1.1.19.4-3,10MBA18-150,"EC+I",7112,"CCGTD1_IPS",TT_Task,"58361",-,-,-,100,TK_Complete,29/05/2019,23/05/2019,12/06/2019,11/09/2019,"EDS.1060 FS,SI-BZK4-25 FS,EDS.1080 FS,SI-BZK4-58 FS,10MBA18-130 FS","EDS.1060,SI-BZK4-25,EDS.1080,SI-BZK4-58,10MBA18-130","10MBA18-190 FS","10MBA18-190",200,235,202,251,46,55,47,58,60,,"CCGT D1_Integrated Programme Schedule;M&E;Construction;M&E Construction;Gas Turbine (MB);(10MBA18) Compressor Cleaning Package",5,1,0.0000010981,0.0024415056,0.002034588,14,0.0,0.0001235934,0.0342465753,0.0030769231,0.0016576141,0.0062663185,0.0064350064,0.0313901345,0.0,0.0173547351
1.3.1.1.19.4-4,10MBA18-130,"Install Small Bore Pipe/Valves/Supports",7112,"CCGTD1_IPS",TT_Task,"58361",-,-,-,100,TK_Complete,23/04/2019,23/04/2019,22/05/2019,05/09/2019,"10MBA18-120 FS,SI1--P4A40 FS,SI1--P4H40 FS,SI1MB-4E27 FS","10MBA18-120,SI1--P4A40,SI1--P4H40,SI1MB-4E27","10MBA18-140 FF,10MBA18-150 FS,10MBA18-180 FS","10MBA18-140,10MBA18-150,10MBA18-180",194,231,199,250,45,54,46,58,55,,"CCGT D1_Integrated Programme Schedule;M&E;Construction;M&E Construction;Gas Turbine (MB);(10MBA18) Compressor Cleaning Package",4,3,0.0000015837,0.0034587996,0.001017294,29,0.0,0.0001243931,0.0273972603,0.0092307692,0.002390625,0.0088772846,0.0032175032,0.0650224215,0.0,0.0176824292
1.3.1.1.19.4-5,10MBA18-140,"NDE",7112,"CCGTD1_IPS",TT_Task,"58361",-,-,-,100,TK_Complete,06/05/2019,06/05/2019,29/05/2019,21/09/2019,"10MBA18-130 FF,10MBA18-120 SS","10MBA18-130,10MBA18-120","10MBA18-160 SS","10MBA18-160",196,233,200,253,45,54,46,59,57,,"CCGT D1_Integrated Programme Schedule;M&E;Construction;M&E Construction;Gas Turbine (MB);(10MBA18) Compressor Cleaning Package",2,1,0.0000004554,0.0028484232,0.0012207528,23,0.0,0.0001698086,0.0136986301,0.0030769231,0.0006875,0.007310705,0.0038610039,0.0515695067,0.0,0.0362913406
1.3.1.1.19.4-6,10MBA18-160,"Line Inspection",7112,"CCGTD1_IPS",TT_Task,"58361",-,-,-,100,TK_Complete,04/09/2019,16/09/2019,05/09/2019,18/09/2019,"10MBA18-110 FS,10MBA18-140 SS","10MBA18-110,10MBA18-140","10MBA18-170 FS","10MBA18-170",214,252,214,252,49,58,49,58,75,,"CCGT D1_Integrated Programme Schedule;M&E;Construction;M&E Construction;Gas Turbine (MB);(10MBA18) Compressor Cleaning Package",2,1,0.0000032709,0.0026449644,0.0054933876,1,1.0,0.0002395351,0.0136986301,0.0030769231,0.0049375,0.0067885117,0.0173745174,0.0022421525,1.0,0.0648616436
1.3.1.1.19.4-7,10MBA18-170,"Hydro Test",7112,"CCGTD1_IPS",TT_Task,"58361",-,-,-,100,TK_Complete,06/09/2019,19/09/2019,09/09/2019,21/09/2019,"10MBA18-160 FS","10MBA18-160","10MBA18-190 FS","10MBA18-190",214,252,214,253,50,59,50,59,75,,"CCGT D1_Integrated Programme Schedule;M&E;Construction;M&E Construction;Gas Turbine (MB);(10MBA18) Compressor Cleaning Package",1,1,0.0000026499,0.0024415056,0.0056968464,3,1.0,0.0002851905,0.0068493151,0.0030769231,0.004,0.0062663185,0.018018018,0.0067264574,1.0,0.083568837
1.3.1.1.19.4-8,10MBA18-180,"Painting/Insulation",7112,"CCGTD1_IPS",TT_Task,"58361",-,-,-,100,TK_Complete,29/05/2019,23/05/2019,03/06/2019,12/10/2019,"10MBA18-130 FS","10MBA18-130","10MBA18-190 FS","10MBA18-190",200,235,200,256,46,55,46,59,60,,"CCGT D1_Integrated Programme Schedule;M&E;Construction;M&E Construction;Gas Turbine (MB);(10MBA18) Compressor Cleaning Package",1,1,0.0000006262,0.0024415056,0.0012207528,5,0.0,0.0000938433,0.0068493151,0.0030769231,0.0009453125,0.0062663185,0.0038610039,0.0112107623,0.0,0.0051647144
1.3.1.1.19.4-9,10MBA18-190,"Pre-Commissioning/Flushing/Cleaning",7112,"CCGTD1_IPS",TT_Task,"58361",-,-,-,100,TK_Complete,10/09/2019,21/09/2019,12/09/2019,12/10/2019,"10MBA18-180 FS,10MBA18-150 FS,10MBA18-170 FS","10MBA18-180,10MBA18-150,10MBA18-170","TOP1310 FS","TOP1310",214,253,215,256,50,59,50,59,76,,"CCGT D1_Integrated Programme Schedule;M&E;Construction;M&E Construction;Gas Turbine (MB);(10MBA18) Compressor Cleaning Package",3,1,0.0000044156,0.0022380468,0.007121058,2,0.0,0.0005092357,0.0205479452,0.0030769231,0.0066654266,0.0057441253,0.0225225225,0.0044843049,0.0,0.17537097
1.3.1.1.19.4-10,10MBA18-110,"Final Align Compressor Cleaning Package and final pipe connections",7112,"CCGTD1_IPS",TT_Task,"58361",-,-,-,100,TK_Complete,18/06/2019,08/06/2019,26/06/2019,03/10/2019,"10MBA18-100 FS","10MBA18-100","10MBA18-160 FS,10MBA1360 FS","10MBA18-160,10MBA1360",202,238,204,254,47,55,47,59,63,,"CCGT D1_Integrated Programme Schedule;M&E;Construction;M&E Construction;Gas Turbine (MB);(10MBA18) Compressor Cleaning Package",1,2,0.0000091503,0.0042726348,0.004069176,8,0.0,0.0001615639,0.0068493151,0.0061538462,0.0138125,0.0109660574,0.0128700129,0.0179372197,0.0,0.0329130733
1.3.1.1.19.5,58360,"(10MBU) GT NOX Water Injection System",7112,"CCGTD1_IPS",WBS,"58347",,,,100,Complete,01/03/2019,15/12/2018,13/08/2019,24/07/2019,,,,,187,213,210,244,43,49,49,57,,,"CCGT D1_Integrated Programme Schedule;M&E;Construction;M&E Construction;Gas Turbine (MB)"
1.3.1.1.19.5-1,10MBU10,"Install Equipment/Skids/Pumps",7112,"CCGTD1_IPS",TT_Task,"58360",-,-,-,100,TK_Complete,01/03/2019,15/12/2018,02/04/2019,23/04/2019,"SI1MB-4E27 FS,SI1MB-4E25 FS,Sub-GTST-180 FS,KD_C04 FS,10MBA1050 FS,PMS14.1020 FS,KD_H02 FS","SI1MB-4E27,SI1MB-4E25,Sub-GTST-180,KD_C04,10MBA1050,PMS14.1020,KD_H02","00LAB20 FS,10MBU20 FS","00LAB20,10MBU20",187,213,191,231,43,49,44,54,48,,"CCGT D1_Integrated Programme Schedule;M&E;Construction;M&E Construction;Gas Turbine (MB);(10MBU) GT NOX Water Injection System",7,2,0.0000240888,0.0067141404,0.0054933876,32,0.0,0.0003734204,0.0479452055,0.0061538462,0.0363625,0.017232376,0.0173745174,0.0717488789,0.0,0.1197208721
1.3.1.1.19.5-2,10MBU20,"Install Large Bore Pipe/Valves/Supports",7112,"CCGTD1_IPS",TT_Task,"58360",-,-,-,100,TK_Complete,24/04/2019,24/04/2019,14/05/2019,06/07/2019,"SI1--P4H40 FS,SI1MB-4E27 FS,SI1--P4A40 FS,10MBU10 FS,10MBA1220 FS,10MBA1230 FS","SI1--P4H40,SI1MB-4E27,SI1--P4A40,10MBU10,10MBA1220,10MBA1230","10MBU50 FS,10MBU30 FS","10MBU50,10MBU30",195,231,197,242,45,54,46,56,55,,"CCGT D1_Integrated Programme Schedule;M&E;Construction;M&E Construction;Gas Turbine (MB);(10MBU) GT NOX Water Injection System",6,2,0.0000499662,0.0042726348,0.0227873856,20,0.0,0.0003543266,0.0410958904,0.0061538462,0.075425,0.0109660574,0.0720720721,0.0448430493,0.0,0.1118972342
1.3.1.1.19.5-3,10MBU50,"EC+I",7112,"CCGTD1_IPS",TT_Task,"58360",-,-,-,100,TK_Complete,08/07/2019,08/07/2019,24/07/2019,24/07/2019,"SI-BZK4-25 FS,10MBU20 FS,EDS.1060 FS,EDS.1080 FS,SI-BZK4-58 FS","SI-BZK4-25,10MBU20,EDS.1060,EDS.1080,SI-BZK4-58","10MBU90 FS","10MBU90",205,242,208,244,48,56,48,57,65,,"CCGT D1_Integrated Programme Schedule;M&E;Construction;M&E Construction;Gas Turbine (MB);(10MBU) GT NOX Water Injection System",5,1,0.0000246228,0.003051882,0.0238046796,16,1.0,0.0002195811,0.0342465753,0.0030769231,0.0371685516,0.0078328982,0.0752895753,0.0358744395,1.0,0.0566855144
1.3.1.1.19.5-4,10MBU30,"Install Small Bore Pipe/Valves/Supports",7112,"CCGTD1_IPS",TT_Task,"58360",-,-,-,100,TK_Complete,25/04/2019,25/04/2019,16/05/2019,08/07/2019,"SI1MB-4E27 FS,SI1--P4A40 FS,SI1--P4H40 FS,10MBU20 FS","SI1MB-4E27,SI1--P4A40,SI1--P4H40,10MBU20","10MBU40 FS","10MBU40",195,231,198,242,45,54,46,56,55,,"CCGT D1_Integrated Programme Schedule;M&E;Construction;M&E Construction;Gas Turbine (MB);(10MBU) GT NOX Water Injection System",4,1,0.0000187146,0.0038657172,0.0229908444,21,0.0,0.0002555414,0.0273972603,0.0030769231,0.02825,0.009921671,0.0727155727,0.0470852018,0.0,0.0714201822
1.3.1.1.19.5-5,10MBU40,"NDE",7112,"CCGTD1_IPS",TT_Task,"58360",-,-,-,100,TK_Complete,10/05/2019,10/05/2019,15/05/2019,10/07/2019,"10MBU30 FS","10MBU30","10MBU60 FS","10MBU60",197,234,198,242,46,54,46,56,58,,"CCGT D1_Integrated Programme Schedule;M&E;Construction;M&E Construction;Gas Turbine (MB);(10MBU) GT NOX Water Injection System",1,1,0.0000147812,0.0036622584,0.0231943032,5,0.0,0.0002986284,0.0068493151,0.0030769231,0.0223125,0.0093994778,0.0733590734,0.0112107623,0.0,0.0890750171
1.3.1.1.19.5-6,10MBU60,"Line Inspection",7112,"CCGTD1_IPS",TT_Task,"58360",-,-,-,100,TK_Complete,10/07/2019,10/07/2019,20/07/2019,12/07/2019,"10MBU40 FS","10MBU40","10MBU70 FS","10MBU70",206,242,207,243,48,56,48,56,66,,"CCGT D1_Integrated Programme Schedule;M&E;Construction;M&E Construction;Gas Turbine (MB);(10MBU) GT NOX Water Injection System",1,1,0.000010765,0.0034587996,0.023397762,10,1.0,0.0003357116,0.0068493151,0.0030769231,0.01625,0.0088772846,0.074002574,0.0224215247,1.0,0.1042697964
1.3.1.1.19.5-7,10MBU70,"Hydro Test",7112,"CCGTD1_IPS",TT_Task,"58360",-,-,-,100,TK_Complete,20/07/2019,13/07/2019,02/08/2019,17/07/2019,"10MBU60 FS","10MBU60","10MBU80 FS","10MBU80",207,243,209,243,48,56,48,56,66,,"CCGT D1_Integrated Programme Schedule;M&E;Construction;M&E Construction;Gas Turbine (MB);(10MBU) GT NOX Water Injection System",1,1,0.000006666,0.0032553408,0.0236012208,13,1.0,0.0003666771,0.0068493151,0.0030769231,0.0100625,0.0083550914,0.0746460746,0.0291479821,1.0,0.1169578177
1.3.1.1.19.5-8,10MBU80,"Painting/Insulation",7112,"CCGTD1_IPS",TT_Task,"58360",-,-,-,100,TK_Complete,05/07/2019,05/07/2019,13/07/2019,24/07/2019,"10MBU70 FS","10MBU70","10MBU90 FS","10MBU90",205,242,206,244,47,56,48,57,65,,"CCGT D1_Integrated Programme Schedule;M&E;Construction;M&E Construction;Gas Turbine (MB);(10MBU) GT NOX Water Injection System",1,1,0.0000024842,0.003051882,0.0238046796,8,0.0,0.0003940868,0.0068493151,0.0030769231,0.00375,0.0078328982,0.0752895753,0.0179372197,0.0,0.1281889269
1.3.1.1.19.5-9,10MBU90,"Pre-Commissioning/Flushing/Cleaning",7112,"CCGTD1_IPS",TT_Task,"58360",-,-,-,100,TK_Complete,31/07/2019,08/06/2019,13/08/2019,15/06/2019,"10MBU50 FS,10MBU80 FS","10MBU50,10MBU80","TOP1370 FS,TOP2710 FS","TOP1370,TOP2710",209,238,210,239,48,55,49,55,67,,"CCGT D1_Integrated Programme Schedule;M&E;Construction;M&E Construction;Gas Turbine (MB);(10MBU) GT NOX Water Injection System",2,2,0.0000232564,0.0028484232,0.0250254323,13,1.0,0.0006053228,0.0136986301,0.0061538462,0.0351060516,0.007310705,0.0791505792,0.0291479821,1.0,0.2147424566
1.3.1.1.19.6,58359,"(00MBU) NOX Water Forwarding System incl. Supply Lines to GT Skid",7112,"CCGTD1_IPS",WBS,"58347",,,,100,Complete,24/01/2019,15/12/2018,30/08/2019,18/07/2019,,,,,182,213,213,243,42,49,49,56,,,"CCGT D1_Integrated Programme Schedule;M&E;Construction;M&E Construction;Gas Turbine (MB)"
1.3.1.1.19.6-1,00MBU20,"Install Large Bore Pipe/Valves/Supports",7112,"CCGTD1_IPS",TT_Task,"58359",-,-,-,100,TK_Complete,18/02/2019,12/02/2019,12/04/2019,06/07/2019,"00MBU10 FS,SI1MB-4E27 FS,SI1--P4A40 FS,SI1--P4H40 FS","00MBU10,SI1MB-4E27,SI1--P4A40,SI1--P4H40","00MBU50 FS,00MBU30 FS","00MBU50,00MBU30",185,221,193,242,43,51,45,56,47,,"CCGT D1_Integrated Programme Schedule;M&E;Construction;M&E Construction;Gas Turbine (MB);(00MBU) NOX Water Forwarding System incl. Supply Lines to GT Skid",4,2,0.0000146025,0.0042726348,0.0048830112,53,0.0,0.0002398185,0.0273972603,0.0061538462,0.0220427083,0.0109660574,0.0154440154,0.1188340807,0.0,0.0649777646
1.3.1.1.19.6-2,00MBU50,"E&IC Installation MBU",7112,"CCGTD1_IPS",TT_Task,"58359",-,-,-,100,TK_Complete,08/07/2019,08/07/2019,18/07/2019,18/07/2019,"00MBU20 FS","00MBU20","00MBU90 FF","00MBU90",205,242,207,243,48,56,48,56,65,,"CCGT D1_Integrated Programme Schedule;M&E;Construction;M&E Construction;Gas Turbine (MB);(00MBU) NOX Water Forwarding System incl. Supply Lines to GT Skid",1,1,0.0000092614,0.003051882,0.00508647,10,1.0,0.0001395755,0.0068493151,0.0030769231,0.0139802083,0.0078328982,0.0160875161,0.0224215247,1.0,0.0239033911
1.3.1.1.19.6-3,00MBU10,"Install Equipment/Skids/Pumps",7112,"CCGTD1_IPS",TT_Task,"58359",-,-,-,100,TK_Complete,24/01/2019,15/12/2018,08/02/2019,20/12/2018,"SI-PAS4-66 FS,SI1MB-4E27 FS,SI1MB-4E25 FS,KD_C04 FS,Sub-GTST-180 FS,KD_C17 FS,KD_C27 FS","SI-PAS4-66,SI1MB-4E27,SI1MB-4E25,KD_C04,Sub-GTST-180,KD_C17,KD_C27","00MBU20 FS","00MBU20",182,213,184,213,42,49,43,49,43,,"CCGT D1_Integrated Programme Schedule;M&E;Construction;M&E Construction;Gas Turbine (MB);(00MBU) NOX Water Forwarding System incl. Supply Lines to GT Skid",7,1,0.0000126151,0.0044760936,0.0042726348,15,1.0,0.0001764764,0.0479452055,0.0030769231,0.0190427083,0.0114882507,0.0135135135,0.033632287,1.0,0.0390234746
1.3.1.1.19.6-4,00MBU30,"Install Small Bore Pipe/Valves/Supports",7112,"CCGTD1_IPS",TT_Task,"58359",-,-,-,100,TK_Complete,27/05/2019,27/05/2019,21/06/2019,08/07/2019,"00MBU20 FS","00MBU20","00MBU40 FS,00MBU80 FS","00MBU40,00MBU80",199,236,203,242,46,55,47,56,60,,"CCGT D1_Integrated Programme Schedule;M&E;Construction;M&E Construction;Gas Turbine (MB);(00MBU) NOX Water Forwarding System incl. Supply Lines to GT Skid",1,2,0.0000041404,0.0038657172,0.00508647,25,0.0,0.0002270807,0.0068493151,0.0061538462,0.00625,0.009921671,0.0160875161,0.0560538117,0.0,0.0597584777
1.3.1.1.19.6-5,00MBU40,"NDE",7112,"CCGTD1_IPS",TT_Task,"58359",-,-,-,100,TK_Complete,10/06/2019,28/05/2019,21/06/2019,13/07/2019,"00MBU30 FS","00MBU30","00MBU60 FS","00MBU60",201,236,203,243,47,55,47,56,62,,"CCGT D1_Integrated Programme Schedule;M&E;Construction;M&E Construction;Gas Turbine (MB);(00MBU) NOX Water Forwarding System incl. Supply Lines to GT Skid",1,1,0.000002153,0.0034587996,0.0052899288,11,0.0,0.0001932015,0.0068493151,0.0030769231,0.00325,0.0088772846,0.0167310167,0.0246636771,0.0,0.0458765199
1.3.1.1.19.6-6,00MBU60,"Line Inspection",7112,"CCGTD1_IPS",TT_Task,"58359",-,-,-,100,TK_Complete,31/07/2019,01/06/2019,08/08/2019,08/06/2019,"00MBU40 FS","00MBU40","00MBU70 FS","00MBU70",209,237,210,238,48,55,49,55,67,,"CCGT D1_Integrated Programme Schedule;M&E;Construction;M&E Construction;Gas Turbine (MB);(00MBU) NOX Water Forwarding System incl. Supply Lines to GT Skid",1,1,0.000001739,0.0032553408,0.0054933876,8,1.0,0.0002457884,0.0068493151,0.0030769231,0.002625,0.0083550914,0.0173745174,0.0179372197,1.0,0.0674239345
1.3.1.1.19.6-7,00MBU70,"Hydro Test",7112,"CCGTD1_IPS",TT_Task,"58359",-,-,-,100,TK_Complete,09/08/2019,15/06/2019,19/08/2019,22/06/2019,"00MBU60 FS","00MBU60","00MBU90 FS","00MBU90",210,239,211,240,49,55,49,56,69,,"CCGT D1_Integrated Programme Schedule;M&E;Construction;M&E Construction;Gas Turbine (MB);(00MBU) NOX Water Forwarding System incl. Supply Lines to GT Skid",1,1,0.0000012421,0.003051882,0.0056968464,10,1.0,0.0002905205,0.0068493151,0.0030769231,0.001875,0.0078328982,0.018018018,0.0224215247,1.0,0.0857528235
1.3.1.1.19.6-8,00MBU80,"Painting/Insulation",7112,"CCGTD1_IPS",TT_Task,"58359",-,-,-,100,TK_Complete,31/07/2019,01/06/2019,08/08/2019,08/06/2019,"00MBU30 FS","00MBU30","00MBU90 FF","00MBU90",209,237,210,238,48,55,49,55,67,,"CCGT D1_Integrated Programme Schedule;M&E;Construction;M&E Construction;Gas Turbine (MB);(00MBU) NOX Water Forwarding System incl. Supply Lines to GT Skid",1,1,0.0000006211,0.003051882,0.0052899288,8,1.0,0.0001626662,0.0068493151,0.0030769231,0.0009375,0.0078328982,0.0167310167,0.0179372197,1.0,0.0333647417
1.3.1.1.19.6-9,00MBU90,"Pre-Commissioning/Flushing/Cleaning",7112,"CCGTD1_IPS",TT_Task,"58359",-,-,-,100,TK_Complete,20/08/2019,22/06/2019,30/08/2019,13/07/2019,"00MBU80 FF,00MBU50 FF,00MBU70 FS","00MBU80,00MBU50,00MBU70","TOP2560 FS,SC1230 FS,SC1240 FS,SC1170 FS","TOP2560,SC1230,SC1240,SC1170",211,240,213,243,49,56,49,56,70,,"CCGT D1_Integrated Programme Schedule;M&E;Construction;M&E Construction;Gas Turbine (MB);(00MBU) NOX Water Forwarding System incl. Supply Lines to GT Skid",3,4,0.0000117042,0.0028484232,0.0063072228,10,0.0,0.0005860042,0.0205479452,0.0123076923,0.0176677083,0.007310705,0.0199485199,0.0224215247,0.0,0.2068267079
1.3.1.1.19.7,58358,"(10MBA4X) Blow Off System",7112,"CCGTD1_IPS",WBS,"58347",,,,100,Complete,31/12/2018,31/12/2018,20/08/2019,22/08/2019,,,,,178,215,211,248,41,50,49,58,,,"CCGT D1_Integrated Programme Schedule;M&E;Construction;M&E Construction;Gas Turbine (MB)"
1.3.1.1.19.7-1,10MBA4x30,"Install Small Bore Pipe/Valves/Supports",7112,"CCGTD1_IPS",TT_Task,"58358",-,-,-,100,TK_Complete,15/05/2019,15/05/2019,25/05/2019,10/07/2019,"10MBA4x20 FF,SI1--P4A40 FS,SI1--P4H40 FS,SI1MB-4E27 FS","10MBA4x20,SI1--P4A40,SI1--P4H40,SI1MB-4E27","10MBA4x50 FS,10MBA4x40 FF,10MBA4x80 FS","10MBA4x50,10MBA4x40,10MBA4x80",198,234,199,242,46,54,46,56,58,,"CCGT D1_Integrated Programme Schedule;M&E;Construction;M&E Construction;Gas Turbine (MB);(10MBA4X) Blow Off System",4,3,0.0000016639,0.0034587996,0.0059003052,10,0.0,0.0001431023,0.0273972603,0.0092307692,0.0025117188,0.0088772846,0.0186615187,0.0224215247,0.0,0.0253485007
1.3.1.1.19.7-2,10MBA4x40,"NDE",7112,"CCGTD1_IPS",TT_Task,"58358",-,-,-,100,TK_Complete,21/05/2019,21/05/2019,31/05/2019,13/07/2019,"10MBA4x30 FF,10MBA4x20 SS","10MBA4x30,10MBA4x20","10MBA4x60 FS","10MBA4x60",198,235,200,243,46,54,46,56,59,,"CCGT D1_Integrated Programme Schedule;M&E;Construction;M&E Construction;Gas Turbine (MB);(10MBA4X) Blow Off System",2,1,0.0000012007,0.0028484232,0.006103764,10,0.0,0.0001719824,0.0136986301,0.0030769231,0.0018125,0.007310705,0.0193050193,0.0224215247,0.0,0.0371820356
1.3.1.1.19.7-3,10MBA4x60,"Line Inspection",7112,"CCGTD1_IPS",TT_Task,"58358",-,-,-,100,TK_Complete,22/07/2019,22/07/2019,31/07/2019,31/07/2019,"10MBA4x50 FS,10MBA4x40 FS","10MBA4x50,10MBA4x40","10MBA4x70 FS","10MBA4x70",207,244,209,245,48,57,48,57,66,,"CCGT D1_Integrated Programme Schedule;M&E;Construction;M&E Construction;Gas Turbine (MB);(10MBA4X) Blow Off System",2,1,0.0000019874,0.0026449644,0.0073245168,9,1.0,0.0002990795,0.0136986301,0.0030769231,0.003,0.0067885117,0.0231660232,0.0201793722,1.0,0.0892598631
1.3.1.1.19.7-4,10MBA4x70,"Hydro Test",7112,"CCGTD1_IPS",TT_Task,"58358",-,-,-,100,TK_Complete,31/07/2019,01/06/2019,09/08/2019,15/06/2019,"10MBA4x60 FS","10MBA4x60","10MBA4x90 FS","10MBA4x90",209,237,210,239,48,55,49,55,67,,"CCGT D1_Integrated Programme Schedule;M&E;Construction;M&E Construction;Gas Turbine (MB);(10MBA4X) Blow Off System",1,1,0.0000009937,0.0024415056,0.0075279756,9,0.8,0.0003359289,0.0068493151,0.0030769231,0.0015,0.0062663185,0.0238095238,0.0201793722,0.8,0.1043588179
1.3.1.1.19.7-5,10MBA4x80,"Painting/Insulation",7112,"CCGTD1_IPS",TT_Task,"58358",-,-,-,100,TK_Complete,10/07/2019,11/05/2019,30/07/2019,23/07/2019,"10MBA4x30 FS","10MBA4x30","10MBA4x90 FF","10MBA4x90",206,234,208,244,48,54,48,57,65,,"CCGT D1_Integrated Programme Schedule;M&E;Construction;M&E Construction;Gas Turbine (MB);(10MBA4X) Blow Off System",1,1,0.0000003778,0.0024415056,0.006103764,20,0.0,0.0001421616,0.0068493151,0.0030769231,0.0005703125,0.0062663185,0.0193050193,0.0448430493,0.0,0.0249630188
1.3.1.1.19.7-6,10MBA4x90,"Pre-Commissioning/Flushing/Cleaning",7112,"CCGTD1_IPS",TT_Task,"58358",-,-,-,100,TK_Complete,10/08/2019,15/06/2019,20/08/2019,22/08/2019,"10MBA4x80 FF,10MBA4x50 FS,10MBA4x70 FS","10MBA4x80,10MBA4x50,10MBA4x70","TOP1340 FS","TOP1340",210,239,211,248,49,55,49,58,69,,"CCGT D1_Integrated Programme Schedule;M&E;Construction;M&E Construction;Gas Turbine (MB);(10MBA4X) Blow Off System",3,1,0.0000052078,0.0022380468,0.0079348932,10,0.0,0.0005677169,0.0205479452,0.0030769231,0.0078612599,0.0057441253,0.0250965251,0.0224215247,0.0,0.1993335273
1.3.1.1.19.7-7,10MBA4x10,"Install Equipment/Skids/Pumps",7112,"CCGTD1_IPS",TT_Task,"58358",-,-,-,100,TK_Complete,31/12/2018,31/12/2018,15/01/2019,11/01/2019,"10MBA1000 FS,SI1MB-4E25 FS,Sub-GTST-180 FS,SI1MB-4E27 FS,HRS10.1080 FS,KD_D06 FS","10MBA1000,SI1MB-4E25,Sub-GTST-180,SI1MB-4E27,HRS10.1080,KD_D06","10MBA4x20 FS","10MBA4x20",178,215,180,217,41,50,42,50,43,,"CCGT D1_Integrated Programme Schedule;M&E;Construction;M&E Construction;Gas Turbine (MB);(10MBA4X) Blow Off System",6,1,0.0000075355,0.0038657172,0.0044760936,15,1.0,0.0001299411,0.0410958904,0.0030769231,0.011375,0.009921671,0.0141570142,0.033632287,1.0,0.0199557089
1.3.1.1.19.7-8,10MBA4x20,"Install Large Bore Pipe/Valves/Supports",7112,"CCGTD1_IPS",TT_Task,"58358",-,-,-,100,TK_Complete,01/04/2019,01/04/2019,23/04/2019,10/07/2019,"SI1--P4H40 FS,SI1--P4A40 FS,10MBA1160 FS,SI1MB-4E27 FS,10MBA4x10 FS,PMS14.1020 FS","SI1--P4H40,SI1--P4A40,10MBA1160,SI1MB-4E27,10MBA4x10,PMS14.1020","10MBA4x30 FF,10MBA4x50 FS,10MBA4x40 SS","10MBA4x30,10MBA4x50,10MBA4x40",191,228,194,242,44,53,45,56,50,,"CCGT D1_Integrated Programme Schedule;M&E;Construction;M&E Construction;Gas Turbine (MB);(10MBA4X) Blow Off System",6,3,0.0000089099,0.0036622584,0.0056968464,22,0.0,0.0002124379,0.0410958904,0.0092307692,0.0134497396,0.0093994778,0.018018018,0.0493273543,0.0,0.0537586273
1.3.1.1.19.7-9,10MBA4x50,"EC+I",7112,"CCGTD1_IPS",TT_Task,"58358",-,-,-,100,TK_Complete,10/07/2019,10/07/2019,20/07/2019,20/07/2019,"10MBA4x20 FS,10MBA4x30 FS,SI-BZK4-25 FS,EDS.1080 FS,EDS.1060 FS,SI-BZK4-58 FS","10MBA4x20,10MBA4x30,SI-BZK4-25,EDS.1080,EDS.1060,SI-BZK4-58","10MBA4x60 FS,10MBA4x90 FS","10MBA4x60,10MBA4x90",206,242,207,244,48,56,48,56,65,,"CCGT D1_Integrated Programme Schedule;M&E;Construction;M&E Construction;Gas Turbine (MB);(10MBA4X) Blow Off System",6,2,0.0000055752,0.0028484232,0.0069175992,10,1.0,0.0001770265,0.0410958904,0.0061538462,0.0084159474,0.007310705,0.0218790219,0.0224215247,1.0,0.0392488461
1.3.1.1.19.8,58357,"(10MBA5x) GT Hydraulic Clearance Optimization Supply System",7112,"CCGTD1_IPS",WBS,"58347",,,,100,Complete,08/04/2019,06/04/2019,15/10/2019,12/10/2019,,,,,192,229,219,256,44,53,51,59,,,"CCGT D1_Integrated Programme Schedule;M&E;Construction;M&E Construction;Gas Turbine (MB)"
1.3.1.1.19.8-1,10MBA5x05,"Set Hydraulic Clearance Optimization Package into Position",7112,"CCGTD1_IPS",TT_Task,"58357",-,-,-,100,TK_Complete,08/04/2019,06/04/2019,09/04/2019,06/05/2019,"10MBA1000 FS,KD_C04 FS,Sub-GTST-180 FS,SI1MB-4E25 FS,10MKB90 FS","10MBA1000,KD_C04,Sub-GTST-180,SI1MB-4E25,10MKB90","10MBA5x10 SS,10MBA5x20 FS,10MBA1060 FS","10MBA5x10,10MBA5x20,10MBA1060",192,229,192,233,44,53,45,54,53,,"CCGT D1_Integrated Programme Schedule;M&E;Construction;M&E Construction;Gas Turbine (MB);(10MBA5x) GT Hydraulic Clearance Optimization Supply System",5,3,0.0000114516,0.0185147508,0.0042726348,1,0.0,0.0000842449,0.0342465753,0.0092307692,0.0172864583,0.0475195822,0.0135135135,0.0022421525,0.0,0.0012317585
1.3.1.1.19.8-2,10MBA5x20,"Install Large Bore Pipe/Valves/Supports",7112,"CCGTD1_IPS",TT_Task,"58357",-,-,-,100,TK_Complete,13/04/2019,13/04/2019,07/05/2019,24/08/2019,"SI1--P4H40 FS,10MBA5x05 FS,10MBA5x10 FS,SI1--P4A40 FS,SI1MB-4E27 FS,10MBA1160 FS","SI1--P4H40,10MBA5x05,10MBA5x10,SI1--P4A40,SI1MB-4E27,10MBA1160","10MBA5x30 SS,10MBA5x40 SS,10MBA5x50 FS","10MBA5x30,10MBA5x40,10MBA5x50",193,230,196,249,45,53,45,58,54,,"CCGT D1_Integrated Programme Schedule;M&E;Construction;M&E Construction;Gas Turbine (MB);(10MBA5x) GT Hydraulic Clearance Optimization Supply System",6,3,0.0000089174,0.0036622584,0.0054933876,24,0.0,0.0002214907,0.0410958904,0.0092307692,0.0134609375,0.0093994778,0.0173745174,0.0538116592,0.0,0.057467975
1.3.1.1.19.8-3,10MBA5x50,"EC+I",7112,"CCGTD1_IPS",TT_Task,"58357",-,-,-,100,TK_Complete,21/05/2019,21/05/2019,13/06/2019,13/09/2019,"EDS.1060 FS,EDS.1080 FS,10MBA5x30 FS,10MBA5x20 FS,SI-BZK4-58 FS,SI-BZK4-25 FS","EDS.1060,EDS.1080,10MBA5x30,10MBA5x20,SI-BZK4-58,SI-BZK4-25","10MBA5x90 FS,10MBA5x60 FS","10MBA5x90,10MBA5x60",198,235,202,252,46,54,47,58,59,,"CCGT D1_Integrated Programme Schedule;M&E;Construction;M&E Construction;Gas Turbine (MB);(10MBA5x) GT Hydraulic Clearance Optimization Supply System",6,2,0.0000068274,0.003051882,0.0067141404,23,0.0,0.0002334073,0.0410958904,0.0061538462,0.0103060516,0.0078328982,0.0212355212,0.0515695067,0.0,0.0623507962
1.3.1.1.19.8-4,10MBA5x30,"Install Small Bore Pipe/Valves/Supports",7112,"CCGTD1_IPS",TT_Task,"58357",-,-,-,100,TK_Complete,13/04/2019,13/04/2019,07/05/2019,24/08/2019,"SI1--P4H40 FS,SI1--P4A40 FS,10MBA5x20 SS,SI1MB-4E27 FS","SI1--P4H40,SI1--P4A40,10MBA5x20,SI1MB-4E27","10MBA5x50 FS,10MBA5x40 FF","10MBA5x50,10MBA5x40",193,230,196,249,45,53,45,58,54,,"CCGT D1_Integrated Programme Schedule;M&E;Construction;M&E Construction;Gas Turbine (MB);(10MBA5x) GT Hydraulic Clearance Optimization Supply System",4,2,0.0000004606,0.0034587996,0.0056968464,24,0.0,0.0001546408,0.0273972603,0.0061538462,0.0006953125,0.0088772846,0.018018018,0.0538116592,0.0,0.0300763632
1.3.1.1.19.8-5,10MBA5x40,"NDE",7112,"CCGTD1_IPS",TT_Task,"58357",-,-,-,100,TK_Complete,10/05/2019,10/05/2019,28/05/2019,27/08/2019,"10MBA5x20 SS,10MBA5x30 FF","10MBA5x20,10MBA5x30","10MBA5x60 FS","10MBA5x60",197,234,199,249,46,54,46,58,58,,"CCGT D1_Integrated Programme Schedule;M&E;Construction;M&E Construction;Gas Turbine (MB);(10MBA5x) GT Hydraulic Clearance Optimization Supply System",2,1,0.000001739,0.003051882,0.0059003052,18,0.0,0.0001912478,0.0136986301,0.0030769231,0.002625,0.0078328982,0.0186615187,0.0403587444,0.0,0.0450760165
1.3.1.1.19.8-6,10MBA5x60,"Line Inspection",7112,"CCGTD1_IPS",TT_Task,"58357",-,-,-,100,TK_Complete,31/08/2019,07/09/2019,04/09/2019,19/09/2019,"10MBA5x40 FS,10MBA5x50 FS","10MBA5x40,10MBA5x50","10MBA5x70 FS,10MBA5x80 FS","10MBA5x70,10MBA5x80",213,251,214,252,49,58,49,59,70,,"CCGT D1_Integrated Programme Schedule;M&E;Construction;M&E Construction;Gas Turbine (MB);(10MBA5x) GT Hydraulic Clearance Optimization Supply System",2,2,0.0000033951,0.0028484232,0.007121058,4,1.0,0.000277205,0.0136986301,0.0061538462,0.005125,0.007310705,0.0225225225,0.0089686099,1.0,0.0802968017
1.3.1.1.19.8-7,10MBA5x70,"Hydro Test",7112,"CCGTD1_IPS",TT_Task,"58357",-,-,-,100,TK_Complete,30/09/2019,30/09/2019,15/10/2019,05/10/2019,"10MBA5x60 FS","10MBA5x60","10MBA5x90 FS","10MBA5x90",217,254,219,255,50,59,51,59,77,,"CCGT D1_Integrated Programme Schedule;M&E;Construction;M&E Construction;Gas Turbine (MB);(10MBA5x) GT Hydraulic Clearance Optimization Supply System",1,1,0.0000004968,0.0024415056,0.0073245168,15,1.0,0.0001697677,0.0068493151,0.0030769231,0.00075,0.0062663185,0.0231660232,0.033632287,1.0,0.0362746026
1.3.1.1.19.8-8,10MBA5x80,"Painting/Insulation",7112,"CCGTD1_IPS",TT_Task,"58357",-,-,-,100,TK_Complete,01/06/2019,20/05/2019,26/06/2019,12/10/2019,"10MBA5x60 FS","10MBA5x60","10MBA5x90 FF","10MBA5x90",200,235,204,256,46,54,47,59,60,,"CCGT D1_Integrated Programme Schedule;M&E;Construction;M&E Construction;Gas Turbine (MB);(10MBA5x) GT Hydraulic Clearance Optimization Supply System",1,1,0.0000004968,0.0024415056,0.0073245168,25,0.0,0.0002287871,0.0068493151,0.0030769231,0.00075,0.0062663185,0.0231660232,0.0560538117,0.0,0.0604576711
1.3.1.1.19.8-9,10MBA5x90,"Pre-Commissioning/Flushing/Cleaning",7112,"CCGTD1_IPS",TT_Task,"58357",-,-,-,100,TK_Complete,19/09/2019,07/09/2019,09/10/2019,12/10/2019,"10MBA5x80 FF,10MBA5x50 FS,10MBA5x70 FS","10MBA5x80,10MBA5x50,10MBA5x70","TOP1320 FS","TOP1320",216,251,219,256,50,58,51,59,77,,"CCGT D1_Integrated Programme Schedule;M&E;Construction;M&E Construction;Gas Turbine (MB);(10MBA5x) GT Hydraulic Clearance Optimization Supply System",3,1,0.0000053782,0.0022380468,0.0077314344,20,0.0,0.0005862735,0.0205479452,0.0030769231,0.0081185516,0.0057441253,0.0244530245,0.0448430493,0.0,0.2069370554
1.3.1.1.19.8-10,10MBA5x10,"Install Equipment/Skids/Pumps",7112,"CCGTD1_IPS",TT_Task,"58357",-,-,-,100,TK_Complete,08/04/2019,08/04/2019,16/04/2019,04/05/2019,"10MBA5x05 SS","10MBA5x05","10MBA5x20 FS","10MBA5x20",192,229,193,233,44,53,45,54,53,,"CCGT D1_Integrated Programme Schedule;M&E;Construction;M&E Construction;Gas Turbine (MB);(10MBA5x) GT Hydraulic Clearance Optimization Supply System",1,1,0.0,0.0038657172,0.0044760936,8,0.0,0.0000971754,0.0068493151,0.0030769231,0.0,0.009921671,0.0141570142,0.0179372197,0.0,0.0065300354
1.3.1.1.19.9,58356,"(10MBX2x) GT Pneumatic System",7112,"CCGTD1_IPS",WBS,"58347",,,,100,Complete,01/04/2019,02/04/2019,24/09/2019,11/10/2019,,,,,191,228,216,256,44,53,50,59,,,"CCGT D1_Integrated Programme Schedule;M&E;Construction;M&E Construction;Gas Turbine (MB)"
1.3.1.1.19.9-1,10MBX2x05,"Set Pneumatic Skid Package into Position",7112,"CCGTD1_IPS",TT_Task,"58356",-,-,-,100,TK_Complete,01/04/2019,03/04/2019,02/04/2019,11/06/2019,"SI1MB-4E27 FS,KD_C04 FS,Sub-GTST-180 FS,SI1MB-4E25 FS,10MBA1000 FS","SI1MB-4E27,KD_C04,Sub-GTST-180,SI1MB-4E25,10MBA1000","10MBX2x20 FS,10MBA1060 FS,10MBX2x10 FS","10MBX2x20,10MBA1060,10MBX2x10",191,228,191,238,44,53,44,55,50,,"CCGT D1_Integrated Programme Schedule;M&E;Construction;M&E Construction;Gas Turbine (MB);(10MBX2x) GT Pneumatic System",5,3,0.0000128697,0.0189216684,0.004069176,1,0.0,0.0000839705,0.0342465753,0.0092307692,0.0194270833,0.0485639687,0.0128700129,0.0022421525,0.0,0.001119363
1.3.1.1.19.9-2,10MBX2x20,"Install Large Bore Pipe/Valves/Supports",7112,"CCGTD1_IPS",TT_Task,"58356",-,-,-,100,TK_Complete,02/04/2019,02/04/2019,30/04/2019,14/09/2019,"10MBA1160 FS,10MBX2x05 FS,SI1MB-4E27 FS,SI1--P4A40 FS,SI1--P4H40 FS,10MBX2x10 FS","10MBA1160,10MBX2x05,SI1MB-4E27,SI1--P4A40,SI1--P4H40,10MBX2x10","10MBX2x50 FS,10MBX2x30 FS","10MBX2x50,10MBX2x30",191,228,195,252,44,53,45,58,52,,"CCGT D1_Integrated Programme Schedule;M&E;Construction;M&E Construction;Gas Turbine (MB);(10MBX2x) GT Pneumatic System",6,2,0.0000105502,0.004069176,0.0054933876,28,0.0,0.0002265386,0.0410958904,0.0061538462,0.0159257813,0.0104438642,0.0173745174,0.0627802691,0.0,0.059536371
1.3.1.1.19.9-3,10MBX2x50,"EC+I",7112,"CCGTD1_IPS",TT_Task,"58356",-,-,-,100,TK_Complete,24/06/2019,01/06/2019,24/07/2019,14/09/2019,"10MBX2x30 FS,EDS.1060 FS,SI-BZK4-25 FS,10MBX2x20 FS,SI-BZK4-58 FS,EDS.1080 FS","10MBX2x30,EDS.1060,SI-BZK4-25,10MBX2x20,SI-BZK4-58,EDS.1080","10MBX2x90 FF","10MBX2x90",203,237,208,252,47,55,48,58,64,,"CCGT D1_Integrated Programme Schedule;M&E;Construction;M&E Construction;Gas Turbine (MB);(10MBX2x) GT Pneumatic System",6,1,0.0000066566,0.0028484232,0.0067141404,30,0.0,0.0002593861,0.0410958904,0.0030769231,0.0100482391,0.007310705,0.0212355212,0.067264574,0.0,0.0729955673
1.3.1.1.19.9-4,10MBX2x30,"Install Small Bore Pipe/Valves/Supports",7112,"CCGTD1_IPS",TT_Task,"58356",-,-,-,100,TK_Complete,09/04/2019,09/04/2019,08/05/2019,14/09/2019,"SI1MB-4E27 FS,SI1--P4H40 FS,SI1--P4A40 FS,10MBX2x20 FS","SI1MB-4E27,SI1--P4H40,SI1--P4A40,10MBX2x20","10MBX2x50 FS,10MBX2x40 FS,10MBX2x80 FS","10MBX2x50,10MBX2x40,10MBX2x80",192,229,197,252,45,53,45,58,53,,"CCGT D1_Integrated Programme Schedule;M&E;Construction;M&E Construction;Gas Turbine (MB);(10MBX2x) GT Pneumatic System",4,3,0.0000050797,0.0038657172,0.0056968464,29,0.0,0.0001805982,0.0273972603,0.0092307692,0.0076679688,0.009921671,0.018018018,0.0650224215,0.0,0.0407123559
1.3.1.1.19.9-5,10MBX2x40,"NDE",7112,"CCGTD1_IPS",TT_Task,"58356",-,-,-,100,TK_Complete,25/05/2019,25/05/2019,12/06/2019,21/09/2019,"10MBX2x30 FS","10MBX2x30","10MBX2x60 FS","10MBX2x60",199,236,202,253,46,55,47,59,59,,"CCGT D1_Integrated Programme Schedule;M&E;Construction;M&E Construction;Gas Turbine (MB);(10MBX2x) GT Pneumatic System",1,1,0.0000024014,0.0032553408,0.0059003052,18,0.0,0.0001202229,0.0068493151,0.0030769231,0.003625,0.0083550914,0.0186615187,0.0403587444,0.0,0.0159736976
1.3.1.1.19.9-6,10MBX2x60,"Line Inspection",7112,"CCGTD1_IPS",TT_Task,"58356",-,-,-,100,TK_Complete,04/09/2019,04/09/2019,09/09/2019,19/09/2019,"10MBX2x40 FS","10MBX2x40","10MBX2x70 FS","10MBX2x70",214,250,214,252,49,58,50,59,75,,"CCGT D1_Integrated Programme Schedule;M&E;Construction;M&E Construction;Gas Turbine (MB);(10MBX2x) GT Pneumatic System",1,1,0.0000018218,0.003051882,0.006103764,5,0.0,0.0001836002,0.0068493151,0.0030769231,0.00275,0.0078328982,0.0193050193,0.0112107623,0.0,0.0419424113
1.3.1.1.19.9-7,10MBX2x70,"Hydro Test",7112,"CCGTD1_IPS",TT_Task,"58356",-,-,-,100,TK_Complete,09/09/2019,21/09/2019,17/09/2019,27/09/2019,"10MBX2x60 FS","10MBX2x60","10MBX2x90 FS","10MBX2x90",214,253,215,254,50,59,50,59,76,,"CCGT D1_Integrated Programme Schedule;M&E;Construction;M&E Construction;Gas Turbine (MB);(10MBX2x) GT Pneumatic System",1,1,0.0000011593,0.0028484232,0.0063072228,8,1.0,0.0002375479,0.0068493151,0.0030769231,0.00175,0.007310705,0.0199485199,0.0179372197,1.0,0.064047377
1.3.1.1.19.9-8,10MBX2x80,"Painting/Insulation",7112,"CCGTD1_IPS",TT_Task,"58356",-,-,-,100,TK_Complete,16/07/2019,26/07/2019,08/08/2019,11/10/2019,"10MBX2x30 FS","10MBX2x30","10MBX2x90 FF","10MBX2x90",206,245,210,256,48,57,49,59,66,,"CCGT D1_Integrated Programme Schedule;M&E;Construction;M&E Construction;Gas Turbine (MB);(10MBX2x) GT Pneumatic System",1,1,0.0000005434,0.0028484232,0.0059003052,23,0.0,0.0001310518,0.0068493151,0.0030769231,0.0008203125,0.007310705,0.0186615187,0.0515695067,0.0,0.0204108358
1.3.1.1.19.9-9,10MBX2x90,"Pre-Commissioning/Flushing/Cleaning",7112,"CCGTD1_IPS",TT_Task,"58356",-,-,-,100,TK_Complete,17/09/2019,14/09/2019,24/09/2019,11/10/2019,"10MBX2x50 FF,10MBX2x70 FS,10MBX2x80 FF","10MBX2x50,10MBX2x70,10MBX2x80","TOP1330 FS","TOP1330",215,252,216,256,50,58,50,59,77,,"CCGT D1_Integrated Programme Schedule;M&E;Construction;M&E Construction;Gas Turbine (MB);(10MBX2x) GT Pneumatic System",3,1,0.0000085249,0.0026449644,0.0077314344,7,0.0,0.0006159484,0.0205479452,0.0030769231,0.0128685516,0.0067885117,0.0244530245,0.0156950673,0.0,0.2190962978
1.3.1.1.19.9-10,10MBX2x10,"Install Equipment/Skids/Pumps",7112,"CCGTD1_IPS",TT_Task,"58356",-,-,-,100,TK_Complete,03/06/2019,15/05/2019,11/06/2019,25/07/2019,"10MBX2x05 FS,10MKB90 FS","10MBX2x05,10MKB90","10MBX2x20 FS","10MBX2x20",200,234,201,244,46,54,47,57,61,,"CCGT D1_Integrated Programme Schedule;M&E;Construction;M&E Construction;Gas Turbine (MB);(10MBX2x) GT Pneumatic System",2,1,0.0000009212,0.0042726348,0.0046795524,8,0.0,0.0000985859,0.0136986301,0.0030769231,0.001390625,0.0109660574,0.0148005148,0.0179372197,0.0,0.0071079875
1.3.1.1.19.10,58355,"(10MBV) GT Lube Oil / Lifting Oil System",7112,"CCGTD1_IPS",WBS,"58347",,,,100,Complete,29/09/2018,14/09/2018,17/09/2019,12/10/2019,,,,,165,200,215,256,38,46,50,59,,,"CCGT D1_Integrated Programme Schedule;M&E;Construction;M&E Construction;Gas Turbine (MB)"
1.3.1.1.19.10-1,10MBV1090,"Pre-Commissioning/Cleaning",7112,"CCGTD1_IPS",TT_Task,"58355",-,-,-,100,TK_Complete,06/09/2019,06/09/2019,17/09/2019,12/10/2019,"KD_C04 FS,SI1MB-4E27 FS,10MBV1050 FS,10MBV1080 FS,SI1MB-4E25 FS,SI1MAV4-40 FS,10MBV1085 FS,10MBA1160 FS,10MBV1060 FS","KD_C04,SI1MB-4E27,10MBV1050,10MBV1080,SI1MB-4E25,SI1MAV4-40,10MBV1085,10MBA1160,10MBV1060","TOP1250 FS","TOP1250",214,251,215,256,50,58,50,59,75,,"CCGT D1_Integrated Programme Schedule;M&E;Construction;M&E Construction;Gas Turbine (MB);(10MBV) GT Lube Oil / Lifting Oil System",9,1,0.0000164641,0.0032553408,0.0073245168,11,0.0,0.0007015788,0.0616438356,0.0030769231,0.0248529266,0.0083550914,0.0231660232,0.0246636771,0.0,0.2541831885
1.3.1.1.19.10-2,10MBV1020,"Install Large Bore Pipe/Valves/Supports",7112,"CCGTD1_IPS",TT_Task,"58355",-,-,-,100,TK_Complete,19/02/2019,07/01/2019,08/05/2019,20/06/2019,"10MBV1000 SS,10MBV1010 FS,SI1MB-4E27 FS,10MBA1160 FS","10MBV1000,10MBV1010,SI1MB-4E27,10MBA1160","10MBV1030 SS,10MBV1040 SS","10MBV1030,10MBV1040",185,216,197,239,43,50,45,55,47,,"CCGT D1_Integrated Programme Schedule;M&E;Construction;M&E Construction;Gas Turbine (MB);(10MBV) GT Lube Oil / Lifting Oil System",4,2,0.0000033537,0.0048830112,0.0044760936,78,0.0,0.0002174313,0.0273972603,0.0061538462,0.0050625,0.0125326371,0.0141570142,0.1748878924,0.0,0.0558046389
1.3.1.1.19.10-3,10MBV1000,"Set GT Lube Oil Package into Position - Skid",7112,"CCGTD1_IPS",TT_Task,"58355",-,-,-,100,TK_Complete,29/09/2018,14/09/2018,29/09/2018,29/09/2018,"SI1MB-4E25 FS,SI1MAV4-40 FS,KD_C04 FS,Sub-GTST-180 FS","SI1MB-4E25,SI1MAV4-40,KD_C04,Sub-GTST-180","10MBV1030 FS,10MBV1020 SS,10MBV1010 FS,10MBA1060 FS,10MBX05 FS,10MBN10 FS","10MBV1030,10MBV1020,10MBV1010,10MBA1060,10MBX05,10MBN10",165,200,165,202,38,46,38,47,37,,"CCGT D1_Integrated Programme Schedule;M&E;Construction;M&E Construction;Gas Turbine (MB);(10MBV) GT Lube Oil / Lifting Oil System",4,6,0.0000143879,0.0229908444,0.0036622584,0,0.0,0.0000812387,0.0273972603,0.0184615385,0.02171875,0.0590078329,0.0115830116,0.0,0.0,0.0
1.3.1.1.19.10-4,10MBV1030,"Install Small Bore Pipe/Valves/Supports",7112,"CCGTD1_IPS",TT_Task,"58355",-,-,-,100,TK_Complete,08/02/2019,18/03/2019,26/03/2019,25/05/2019,"10MBV1000 FS,SI1--P4A40 FS,SI1--P4H40 FS,SI1MB-4E27 FS,10MBV1020 SS","10MBV1000,SI1--P4A40,SI1--P4H40,SI1MB-4E27,10MBV1020","10MBV1050 FS,10MBV1040 FF","10MBV1050,10MBV1040",184,226,190,236,43,52,44,55,46,,"CCGT D1_Integrated Programme Schedule;M&E;Construction;M&E Construction;Gas Turbine (MB);(10MBV) GT Lube Oil / Lifting Oil System",5,2,0.0000083739,0.0046795524,0.00508647,46,0.0,0.000234488,0.0342465753,0.0061538462,0.012640625,0.0120104439,0.0160875161,0.1031390135,0.0,0.0627936144
1.3.1.1.19.10-5,10MBV1040,"NDE",7112,"CCGTD1_IPS",TT_Task,"58355",-,-,-,100,TK_Complete,03/04/2019,03/04/2019,25/04/2019,25/06/2019,"10MBV1020 SS,10MBV1030 FF","10MBV1020,10MBV1030","10MBV1060 FS","10MBV1060",192,228,195,240,44,53,45,56,52,,"CCGT D1_Integrated Programme Schedule;M&E;Construction;M&E Construction;Gas Turbine (MB);(10MBV) GT Lube Oil / Lifting Oil System",2,1,0.0000050099,0.0042726348,0.0052899288,22,0.0,0.0002409296,0.0136986301,0.0030769231,0.0075625,0.0109660574,0.0167310167,0.0493273543,0.0,0.0654330513
1.3.1.1.19.10-6,10MBV1050,"EC+I",7112,"CCGTD1_IPS",TT_Task,"58355",-,-,-,100,TK_Complete,27/05/2019,27/05/2019,18/06/2019,14/09/2019,"EDS.1080 FS,10MBV1030 FS,SI-BZK4-25 FS,EDS.1060 FS,SI-BZK4-58 FS","EDS.1080,10MBV1030,SI-BZK4-25,EDS.1060,SI-BZK4-58","10MBV1090 FS","10MBV1090",199,236,202,252,46,55,47,58,60,,"CCGT D1_Integrated Programme Schedule;M&E;Construction;M&E Construction;Gas Turbine (MB);(10MBV) GT Lube Oil / Lifting Oil System",5,1,0.000006817,0.0034587996,0.006103764,22,0.0,0.0001921567,0.0342465753,0.0030769231,0.0102904266,0.0088772846,0.0193050193,0.0493273543,0.0,0.0454484447
1.3.1.1.19.10-7,10MBV1060,"Line Inspection",7112,"CCGTD1_IPS",TT_Task,"58355",-,-,-,100,TK_Complete,10/06/2019,04/06/2019,13/06/2019,08/06/2019,"10MBV1040 FS","10MBV1040","10MBV1090 FS,10MBV1080 FS,10MBV1083 FS","10MBV1090,10MBV1080,10MBV1083",201,237,202,238,47,55,47,55,62,,"CCGT D1_Integrated Programme Schedule;M&E;Construction;M&E Construction;Gas Turbine (MB);(10MBV) GT Lube Oil / Lifting Oil System",1,3,0.0000047614,0.004069176,0.0054933876,3,1.0,0.0002864098,0.0068493151,0.0092307692,0.0071875,0.0104438642,0.0173745174,0.0067264574,1.0,0.0840684459
1.3.1.1.19.10-8,10MBV1080,"Painting/Insulation",7112,"CCGTD1_IPS",TT_Task,"58355",-,-,-,100,TK_Complete,31/05/2019,21/05/2019,18/06/2019,12/10/2019,"10MBV1060 FS","10MBV1060","10MBV1090 FS","10MBV1090",200,235,202,256,46,54,47,59,60,,"CCGT D1_Integrated Programme Schedule;M&E;Construction;M&E Construction;Gas Turbine (MB);(10MBV) GT Lube Oil / Lifting Oil System",1,1,0.0,0.0034587996,0.0056968464,18,0.0,0.0002326601,0.0068493151,0.0030769231,0.0,0.0088772846,0.018018018,0.0403587444,0.0,0.0620446292
1.3.1.1.19.10-9,10MBV1010,"Install Equipment/Skids/Pumps",7112,"CCGTD1_IPS",TT_Task,"58355",-,-,-,100,TK_Complete,30/11/2018,10/10/2018,07/12/2018,11/10/2018,"10MBV1000 FS,10MBA1160 FS","10MBV1000,10MBA1160","10MBV1020 FS","10MBV1020",174,203,175,203,40,47,40,47,41,,"CCGT D1_Integrated Programme Schedule;M&E;Construction;M&E Construction;Gas Turbine (MB);(10MBV) GT Lube Oil / Lifting Oil System",2,1,0.0,0.00508647,0.004069176,7,1.0,0.0000861317,0.0136986301,0.0030769231,0.0,0.0130548303,0.0128700129,0.0156950673,1.0,0.002004886
1.3.1.1.19.10-10,10MBV1083,"Temporary Power Available for GT Lube Oil Flush & Restore",7112,"CCGTD1_IPS",TT_Mile,"58355",-,-,-,100,TK_Complete,31/05/2019,24/05/2019,31/05/2019,24/05/2019,"10MBV1060 FS","10MBV1060","10MBV1085 SS","10MBV1085",200,236,200,236,46,55,46,55,60,,"CCGT D1_Integrated Programme Schedule;M&E;Construction;M&E Construction;Gas Turbine (MB);(10MBV) GT Lube Oil / Lifting Oil System",1,1,0.0000011593,0.0036622584,0.0056968464,0,1.0,0.0000812387,0.0068493151,0.0030769231,0.00175,0.0093994778,0.018018018,0.0,1.0,0.0
1.3.1.1.19.10-11,10MBV1085,"GT Lube Oil/Lifting Flush & Restore",7112,"CCGTD1_IPS",TT_Task,"58355",-,-,-,100,TK_Complete,31/05/2019,20/06/2019,22/06/2019,13/07/2019,"10MBV1083 SS","10MBV1083","10MBV1090 FS","10MBV1090",200,239,203,243,46,55,47,56,60,,"CCGT D1_Integrated Programme Schedule;M&E;Construction;M&E Construction;Gas Turbine (MB);(10MBV) GT Lube Oil / Lifting Oil System",1,1,0.0000007039,0.0034587996,0.0059003052,22,0.8,0.0001503957,0.0068493151,0.0030769231,0.0010625,0.0088772846,0.0186615187,0.0493273543,0.8,0.0283369572
1.3.1.1.19.11,58354,"(10MBX) GT Hydraulic/Control Oil",7112,"CCGTD1_IPS",WBS,"58347",,,,100,Complete,01/04/2019,02/04/2019,11/09/2019,14/09/2019,,,,,191,228,215,252,44,53,50,58,,,"CCGT D1_Integrated Programme Schedule;M&E;Construction;M&E Construction;Gas Turbine (MB)"
1.3.1.1.19.11-1,10MBX20,"Install Large Bore Pipe/Valves/Supports",7112,"CCGTD1_IPS",TT_Task,"58354",-,-,-,100,TK_Complete,01/04/2019,02/04/2019,27/04/2019,04/09/2019,"10MBX05 FS,SI1MB-4E27 FS,10MBA1160 FS,SI1--P4A40 FS,SI1--P4H40 FS","10MBX05,SI1MB-4E27,10MBA1160,SI1--P4A40,SI1--P4H40","10MBX40 SS,10MBX30 SS","10MBX40,10MBX30",191,228,195,250,44,53,45,58,50,,"CCGT D1_Integrated Programme Schedule;M&E;Construction;M&E Construction;Gas Turbine (MB);(10MBX) GT Hydraulic/Control Oil",5,2,0.0000052169,0.0038657172,0.0056968464,26,0.0,0.0001469736,0.0342465753,0.0061538462,0.007875,0.009921671,0.018018018,0.0582959641,0.0,0.0269347422
1.3.1.1.19.11-2,10MBX50,"EC+I",7112,"CCGTD1_IPS",TT_Task,"58354",-,-,-,100,TK_Complete,31/05/2019,01/06/2019,26/06/2019,14/09/2019,"SI-BZK4-25 FS,SI-BZK4-58 FS,10MBX30 SS","SI-BZK4-25,SI-BZK4-58,10MBX30","10MBX90 FS","10MBX90",200,237,204,252,46,55,47,58,60,,"CCGT D1_Integrated Programme Schedule;M&E;Construction;M&E Construction;Gas Turbine (MB);(10MBX) GT Hydraulic/Control Oil",3,1,0.0000023382,0.0028484232,0.0065106816,26,0.0,0.0001395819,0.0205479452,0.0030769231,0.0035295139,0.007310705,0.0205920206,0.0582959641,0.0,0.0239060118
1.3.1.1.19.11-3,10MBX05,"Set Equipment/Skids/Pumps",7112,"CCGTD1_IPS",TT_Task,"58354",-,-,-,100,TK_Complete,08/04/2019,06/04/2019,09/04/2019,05/06/2019,"Sub-GTST-180 FS,10MBA1000 FS,SI1MB-4E25 FS,KD_C04 FS,10MBV1000 FS,KD_C17 FS,10MKB90 FS","Sub-GTST-180,10MBA1000,SI1MB-4E25,KD_C04,10MBV1000,KD_C17,10MKB90","10MBA1060 FS,10MBX20 FS,10MBX10 FS","10MBA1060,10MBX20,10MBX10",192,229,192,237,44,53,45,55,53,,"CCGT D1_Integrated Programme Schedule;M&E;Construction;M&E Construction;Gas Turbine (MB);(10MBX) GT Hydraulic/Control Oil",7,3,0.0000161855,0.0177009156,0.0046795524,1,0.0,0.0000847989,0.0479452055,0.0092307692,0.0244322917,0.0454308094,0.0148005148,0.0022421525,0.0,0.0014587623
1.3.1.1.19.11-4,10MBX100,"Final Pipe Connections to Skid",7112,"CCGTD1_IPS",TT_Task,"58354",-,-,-,100,TK_Complete,17/06/2019,17/06/2019,19/06/2019,03/09/2019,"10MBX10 FS","10MBX10","10MBX90 FF","10MBX90",202,239,203,250,47,55,47,58,63,,"CCGT D1_Integrated Programme Schedule;M&E;Construction;M&E Construction;Gas Turbine (MB);(10MBX) GT Hydraulic/Control Oil",1,1,0.0000205605,0.0028484232,0.0225839268,2,0.0,0.0003958728,0.0068493151,0.0030769231,0.0310364583,0.007310705,0.0714285714,0.0044843049,0.0,0.1289207042
1.3.1.1.19.11-5,10MBX30,"Install Small Bore Pipe/Valves/Supports",7112,"CCGTD1_IPS",TT_Task,"58354",-,-,-,100,TK_Complete,23/04/2019,23/04/2019,17/05/2019,06/09/2019,"SI1--P4A40 FS,10MBX20 SS,SI1--P4H40 FS,SI1MB-4E27 FS","SI1--P4A40,10MBX20,SI1--P4H40,SI1MB-4E27","10MBX40 FF,10MBX50 SS,10MBX60 FS","10MBX40,10MBX50,10MBX60",194,231,198,251,45,54,46,58,55,,"CCGT D1_Integrated Programme Schedule;M&E;Construction;M&E Construction;Gas Turbine (MB);(10MBX) GT Hydraulic/Control Oil",4,3,0.0000038609,0.0036622584,0.0059003052,24,0.0,0.0001439026,0.0273972603,0.0092307692,0.005828125,0.0093994778,0.0186615187,0.0538116592,0.0,0.0256764129
1.3.1.1.19.11-6,10MBX40,"NDE",7112,"CCGTD1_IPS",TT_Task,"58354",-,-,-,100,TK_Complete,16/04/2019,16/04/2019,13/05/2019,10/09/2019,"10MBX20 SS,10MBX30 FF","10MBX20,10MBX30","10MBX60 FS","10MBX60",193,230,197,251,45,53,46,58,54,,"CCGT D1_Integrated Programme Schedule;M&E;Construction;M&E Construction;Gas Turbine (MB);(10MBX) GT Hydraulic/Control Oil",2,1,0.0000010351,0.0032553408,0.006103764,27,0.0,0.0002054954,0.0136986301,0.0030769231,0.0015625,0.0083550914,0.0193050193,0.0605381166,0.0,0.0509139336
1.3.1.1.19.11-7,10MBX60,"Line Inspection",7112,"CCGTD1_IPS",TT_Task,"58354",-,-,-,100,TK_Complete,12/08/2019,27/08/2019,16/08/2019,04/09/2019,"10MBX40 FS,10MBX30 FS","10MBX40,10MBX30","10MBX70 FS","10MBX70",210,249,211,250,49,58,49,58,69,,"CCGT D1_Integrated Programme Schedule;M&E;Construction;M&E Construction;Gas Turbine (MB);(10MBX) GT Hydraulic/Control Oil",2,1,0.0000018632,0.003051882,0.0063072228,4,0.6,0.0002647903,0.0136986301,0.0030769231,0.0028125,0.0078328982,0.0199485199,0.0089686099,0.6,0.0752099012
1.3.1.1.19.11-8,10MBX70,"Hydro Test",7112,"CCGTD1_IPS",TT_Task,"58354",-,-,-,100,TK_Complete,16/08/2019,29/08/2019,28/08/2019,07/09/2019,"10MBX60 FS","10MBX60","10MBX90 FS","10MBX90",211,249,213,251,49,58,49,58,70,,"CCGT D1_Integrated Programme Schedule;M&E;Construction;M&E Construction;Gas Turbine (MB);(10MBX) GT Hydraulic/Control Oil",1,1,0.0000011593,0.0028484232,0.0065106816,12,1.0,0.0003067345,0.0068493151,0.0030769231,0.00175,0.007310705,0.0205920206,0.0269058296,1.0,0.0923964683
1.3.1.1.19.11-9,10MBX80,"Painting/Insulation",7112,"CCGTD1_IPS",TT_Task,"58354",-,-,-,100,TK_Complete,30/04/2019,06/05/2019,24/05/2019,13/09/2019,"","","10MBX90 FF","10MBX90",195,233,199,252,45,54,46,58,55,,"CCGT D1_Integrated Programme Schedule;M&E;Construction;M&E Construction;Gas Turbine (MB);(10MBX) GT Hydraulic/Control Oil",0,1,0.0,0.0028484232,0.0,24,0.0,0.0000812387,0.0,0.0030769231,0.0,0.007310705,0.0,0.0538116592,0.0,0.0
1.3.1.1.19.11-10,10MBX90,"Pre-Commissioning/Flushing/Cleaning",7112,"CCGTD1_IPS",TT_Task,"58354",-,-,-,100,TK_Complete,28/08/2019,31/08/2019,11/09/2019,13/09/2019,"10MBX50 FS,10MBX80 FF,10MBX100 FF,10MBX70 FS","10MBX50,10MBX80,10MBX100,10MBX70","TOP1270 FS","TOP1270",213,250,215,252,49,58,50,58,70,,"CCGT D1_Integrated Programme Schedule;M&E;Construction;M&E Construction;Gas Turbine (MB);(10MBX) GT Hydraulic/Control Oil",4,1,0.0000212425,0.0026449644,0.0252288911,14,1.0,0.0008676697,0.0273972603,0.0030769231,0.0320659722,0.0067885117,0.0797940798,0.0313901345,1.0,0.3222386191
1.3.1.1.19.11-11,10MBX10,"Final nstall Equipment/Skids/Pumps",7112,"CCGTD1_IPS",TT_Task,"58354",-,-,-,100,TK_Complete,14/06/2019,01/06/2019,18/06/2019,26/07/2019,"10MBA1270 FS,10MBX05 FS","10MBA1270,10MBX05","10MBX100 FS","10MBX100",202,237,202,245,47,55,47,57,63,,"CCGT D1_Integrated Programme Schedule;M&E;Construction;M&E Construction;Gas Turbine (MB);(10MBX) GT Hydraulic/Control Oil",2,1,0.0000245353,0.003051882,0.022380468,4,0.0,0.0003693465,0.0136986301,0.0030769231,0.0370364583,0.0078328982,0.0707850708,0.0089686099,0.0,0.1180516106
1.3.1.1.19.12,58353,"(10MBP) GT Natural Gas Incl. Draining System MBP40",7112,"CCGTD1_IPS",WBS,"58347",,,,100,Complete,06/04/2019,09/04/2019,04/10/2019,21/11/2019,,,,,192,229,218,261,44,53,50,61,,,"CCGT D1_Integrated Programme Schedule;M&E;Construction;M&E Construction;Gas Turbine (MB)"
1.3.1.1.19.12-1,10MBP20,"Install Large Bore Pipe/Valves/Supports",7112,"CCGTD1_IPS",TT_Task,"58353",-,-,-,100,TK_Complete,23/05/2019,15/05/2019,19/06/2019,25/07/2019,"SI1MB-4E27 FS,SI1MB-4E25 FS,KD_C04 FS,10MBP10 FS,10MBA1110 FS","SI1MB-4E27,SI1MB-4E25,KD_C04,10MBP10,10MBA1110","10MBP50 FS,10MBP30 FS","10MBP50,10MBP30",199,234,203,244,46,54,47,57,59,,"CCGT D1_Integrated Programme Schedule;M&E;Construction;M&E Construction;Gas Turbine (MB);(10MBP) GT Natural Gas Incl. Draining System MBP40",5,2,0.0000198842,0.0038657172,0.0093591048,27,0.0,0.000437922,0.0342465753,0.0061538462,0.030015625,0.009921671,0.0296010296,0.0605381166,0.0,0.1461503076
1.3.1.1.19.12-2,10MBP50,"EC+I",7112,"CCGTD1_IPS",TT_Task,"58353",-,-,-,100,TK_Complete,25/06/2019,24/06/2019,19/07/2019,12/09/2019,"EDS.1060 FS,EDS.1080 FS,10MBP20 FS,10MBP30 FS,SI-BZK4-58 FS,SI-BZK4-25 FS","EDS.1060,EDS.1080,10MBP20,10MBP30,SI-BZK4-58,SI-BZK4-25","10MBP90 FS","10MBP90",203,240,207,251,47,56,48,58,64,,"CCGT D1_Integrated Programme Schedule;M&E;Construction;M&E Construction;Gas Turbine (MB);(10MBP) GT Natural Gas Incl. Draining System MBP40",6,1,0.0000116713,0.0026449644,0.0109867752,24,0.0,0.0003768841,0.0410958904,0.0030769231,0.0176180556,0.0067885117,0.0347490347,0.0538116592,0.0,0.1211401355
1.3.1.1.19.12-3,10MBP30,"Install Small Bore Pipe/Valves/Supports",7112,"CCGTD1_IPS",TT_Task,"58353",-,-,-,100,TK_Complete,07/06/2019,24/05/2019,26/06/2019,25/07/2019,"SI1--P4H40 FS,10MBP10 FS,SI1MB-4E27 FS,SI1--P4A40 FS,10MBP20 FS","SI1--P4H40,10MBP10,SI1MB-4E27,SI1--P4A40,10MBP20","10MBP50 FS,10MBP40 FS,10MBP80 FS","10MBP50,10MBP40,10MBP80",201,236,204,244,46,55,47,57,62,,"CCGT D1_Integrated Programme Schedule;M&E;Construction;M&E Construction;Gas Turbine (MB);(10MBP) GT Natural Gas Incl. Draining System MBP40",5,3,0.0000093883,0.0036622584,0.0099694812,19,0.0,0.0002801809,0.0342465753,0.0092307692,0.014171875,0.0093994778,0.0315315315,0.0426008969,0.0,0.0815161896
1.3.1.1.19.12-4,10MBP40,"NDE",7112,"CCGTD1_IPS",TT_Task,"58353",-,-,-,100,TK_Complete,22/05/2019,22/05/2019,26/06/2019,21/09/2019,"10MBP30 FS","10MBP30","10MBP60 FS","10MBP60",199,235,204,253,46,55,47,59,59,,"CCGT D1_Integrated Programme Schedule;M&E;Construction;M&E Construction;Gas Turbine (MB);(10MBP) GT Natural Gas Incl. Draining System MBP40",1,1,0.0000041404,0.003051882,0.01017294,35,0.0,0.0001911075,0.0068493151,0.0030769231,0.00625,0.0078328982,0.0321750322,0.0784753363,0.0,0.0450185121
1.3.1.1.19.12-5,10MBP60,"Line Inspection",7112,"CCGTD1_IPS",TT_Task,"58353",-,-,-,100,TK_Complete,07/09/2019,17/09/2019,12/09/2019,20/09/2019,"10MBP40 FS","10MBP40","10MBP70 FS","10MBP70",214,252,215,253,50,58,50,59,76,,"CCGT D1_Integrated Programme Schedule;M&E;Construction;M&E Construction;Gas Turbine (MB);(10MBP) GT Natural Gas Incl. Draining System MBP40",1,1,0.0000026499,0.0028484232,0.0103763988,5,1.0,0.0002424435,0.0068493151,0.0030769231,0.004,0.007310705,0.0328185328,0.0112107623,1.0,0.0660533359
1.3.1.1.19.12-6,10MBP70,"Hydro Test",7112,"CCGTD1_IPS",TT_Task,"58353",-,-,-,100,TK_Complete,30/09/2019,22/10/2019,04/10/2019,24/10/2019,"10MBP60 FS","10MBP60","10MBP90 FS","10MBP90",217,257,218,257,50,60,50,60,77,,"CCGT D1_Integrated Programme Schedule;M&E;Construction;M&E Construction;Gas Turbine (MB);(10MBP) GT Natural Gas Incl. Draining System MBP40",1,1,0.0000010765,0.0026449644,0.0105798576,4,1.0,0.0002873359,0.0068493151,0.0030769231,0.001625,0.0067885117,0.0334620335,0.0089686099,1.0,0.0844479237
1.3.1.1.19.12-7,10MBP80,"Painting/Insulation",7112,"CCGTD1_IPS",TT_Task,"58353",-,-,-,100,TK_Complete,25/06/2019,13/06/2019,13/07/2019,21/11/2019,"10MBP30 FS","10MBP30","10MBP90 FS","10MBP90",203,238,206,261,47,55,48,61,64,,"CCGT D1_Integrated Programme Schedule;M&E;Construction;M&E Construction;Gas Turbine (MB);(10MBP) GT Natural Gas Incl. Draining System MBP40",1,1,0.0000009523,0.0026449644,0.01017294,18,0.0,0.0001377426,0.0068493151,0.0030769231,0.0014375,0.0067885117,0.0321750322,0.0403587444,0.0,0.0231523776
1.3.1.1.19.12-8,10MBP90,"Pre-Commissioning/Flushing/Cleaning",7112,"CCGTD1_IPS",TT_Task,"58353",-,-,-,100,TK_Complete,18/09/2019,14/09/2019,24/09/2019,21/11/2019,"10MBP80 FS,10MBP50 FS,10MBP70 FS","10MBP80,10MBP50,10MBP70","TOP1280 FS","TOP1280",216,252,216,261,50,58,50,61,77,,"CCGT D1_Integrated Programme Schedule;M&E;Construction;M&E Construction;Gas Turbine (MB);(10MBP) GT Natural Gas Incl. Draining System MBP40",3,1,0.000012872,0.0024415056,0.0120040692,6,0.0,0.0007660373,0.0205479452,0.0030769231,0.0194305556,0.0062663185,0.037966538,0.0134529148,0.0,0.2805949141
1.3.1.1.19.12-9,10MBP10,"Install Fuel Gas Equipment/Skids",7112,"CCGTD1_IPS",TT_Task,"58353",-,-,-,100,TK_Complete,06/04/2019,09/04/2019,25/04/2019,23/07/2019,"10MKB90 FS","10MKB90","10MBP30 FS,10MBP20 FS","10MBP30,10MBP20",192,229,195,244,44,53,45,57,52,,"CCGT D1_Integrated Programme Schedule;M&E;Construction;M&E Construction;Gas Turbine (MB);(10MBP) GT Natural Gas Incl. Draining System MBP40",1,2,0.0000009109,0.004069176,0.0004069176,19,0.0,0.0000884845,0.0068493151,0.0061538462,0.001375,0.0104438642,0.0012870013,0.0426008969,0.0,0.0029689546
1.3.1.1.19.13,58352,"(10MBN) GT Fuel Oil Injection System",7112,"CCGTD1_IPS",WBS,"58347",,,,100,Complete,21/01/2019,21/01/2019,04/10/2019,06/11/2019,,,,,181,218,218,259,42,50,50,60,,,"CCGT D1_Integrated Programme Schedule;M&E;Construction;M&E Construction;Gas Turbine (MB)"
1.3.1.1.19.13-1,10MBN10,"Install Equipment/Skids/Pumps",7112,"CCGTD1_IPS",TT_Task,"58352",-,-,-,100,TK_Complete,08/04/2019,06/04/2019,25/04/2019,07/06/2019,"KD_C04 FS,SI1MB-4E25 FS,Sub-GTST-180 FS,10MBV1000 FS,KD_C17 FS,10MKB90 FS","KD_C04,SI1MB-4E25,Sub-GTST-180,10MBV1000,KD_C17,10MKB90","10MBN30 FF","10MBN30",192,229,195,238,44,53,45,55,53,,"CCGT D1_Integrated Programme Schedule;M&E;Construction;M&E Construction;Gas Turbine (MB);(10MBN) GT Fuel Oil Injection System",6,1,0.0000066488,0.0036622584,0.0042726348,17,0.0,0.0001160189,0.0410958904,0.0030769231,0.0100364583,0.0093994778,0.0135135135,0.0381165919,0.0,0.0142510956
1.3.1.1.19.13-2,10MBN20,"Install Large Bore Pipe/Valves/Supports",7112,"CCGTD1_IPS",TT_Task,"58352",-,-,-,100,TK_Complete,21/01/2019,21/01/2019,11/03/2019,22/04/2019,"10MBA1160 FS,SI1MB-4E27 FS","10MBA1160,SI1MB-4E27","10MBN30 SS,10MBN40 SS","10MBN30,10MBN40",181,218,188,231,42,50,44,54,43,,"CCGT D1_Integrated Programme Schedule;M&E;Construction;M&E Construction;Gas Turbine (MB);(10MBN) GT Fuel Oil Injection System",2,2,0.0000004968,0.0036622584,0.0006103764,49,0.0,0.0000985869,0.0136986301,0.0061538462,0.00075,0.0093994778,0.0019305019,0.1098654709,0.0,0.0071083652
1.3.1.1.19.13-3,10MBN50,"EC+I",7112,"CCGTD1_IPS",TT_Task,"58352",-,-,-,100,TK_Complete,30/04/2019,08/05/2019,04/06/2019,14/09/2019,"SI-BZK4-25 FS,SI-BZK4-58 FS,10MBN30 SS","SI-BZK4-25,SI-BZK4-58,10MBN30","10MBN90 FS","10MBN90",195,233,200,252,45,54,46,58,55,,"CCGT D1_Integrated Programme Schedule;M&E;Construction;M&E Construction;Gas Turbine (MB);(10MBN) GT Fuel Oil Injection System",3,1,0.0000034802,0.0024415056,0.006103764,35,0.0,0.0001922828,0.0205479452,0.0030769231,0.0052534722,0.0062663185,0.0193050193,0.0784753363,0.0,0.0455001101
1.3.1.1.19.13-4,10MBN30,"Install Small Bore Pipe/Valves/Supports",7112,"CCGTD1_IPS",TT_Task,"58352",-,-,-,100,TK_Complete,01/04/2019,04/04/2019,06/05/2019,03/09/2019,"10MBN20 SS,SI1--P4A40 FS,SI1--P4H40 FS,SI1MB-4E27 FS,10MBN10 FF","10MBN20,SI1--P4A40,SI1--P4H40,SI1MB-4E27,10MBN10","10MBN40 FF,10MBN50 SS","10MBN40,10MBN50",191,228,196,250,44,53,45,58,50,,"CCGT D1_Integrated Programme Schedule;M&E;Construction;M&E Construction;Gas Turbine (MB);(10MBN) GT Fuel Oil Injection System",5,2,0.000007777,0.0034587996,0.0054933876,35,0.0,0.0002314201,0.0342465753,0.0061538462,0.0117395833,0.0088772846,0.0173745174,0.0784753363,0.0,0.061536543
1.3.1.1.19.13-5,10MBN40,"NDE",7112,"CCGTD1_IPS",TT_Task,"58352",-,-,-,100,TK_Complete,23/04/2019,23/04/2019,22/05/2019,17/09/2019,"10MBN30 FF,10MBN20 SS","10MBN30,10MBN20","10MBN60 FS,10MBN80 FS","10MBN60,10MBN80",194,231,199,252,45,54,46,58,55,,"CCGT D1_Integrated Programme Schedule;M&E;Construction;M&E Construction;Gas Turbine (MB);(10MBN) GT Fuel Oil Injection System",2,2,0.0000037678,0.003051882,0.0056968464,29,0.0,0.0002085255,0.0136986301,0.0061538462,0.0056875,0.0078328982,0.018018018,0.0650224215,0.0,0.0521555252
1.3.1.1.19.13-6,10MBN60,"Line Inspection",7112,"CCGTD1_IPS",TT_Task,"58352",-,-,-,100,TK_Complete,04/09/2019,14/09/2019,07/09/2019,19/09/2019,"10MBN40 FS","10MBN40","10MBN70 FS","10MBN70",214,252,214,252,49,58,50,59,75,,"CCGT D1_Integrated Programme Schedule;M&E;Construction;M&E Construction;Gas Turbine (MB);(10MBN) GT Fuel Oil Injection System",1,1,0.0000012007,0.0026449644,0.0059003052,3,0.6,0.0001054493,0.0068493151,0.0030769231,0.0018125,0.0067885117,0.0186615187,0.0067264574,0.6,0.0099202591
1.3.1.1.19.13-7,10MBN70,"Hydro Test",7112,"CCGTD1_IPS",TT_Task,"58352",-,-,-,100,TK_Complete,30/09/2019,26/10/2019,04/10/2019,26/10/2019,"10MBN60 FS","10MBN60","10MBN90 FS","10MBN90",217,258,218,258,50,60,50,60,77,,"CCGT D1_Integrated Programme Schedule;M&E;Construction;M&E Construction;Gas Turbine (MB);(10MBN) GT Fuel Oil Injection System",1,1,0.0000004968,0.0024415056,0.006103764,4,1.0,0.0001710184,0.0068493151,0.0030769231,0.00075,0.0062663185,0.0193050193,0.0089686099,1.0,0.0367870568
1.3.1.1.19.13-8,10MBN80,"Painting/Insulation",7112,"CCGTD1_IPS",TT_Task,"58352",-,-,-,100,TK_Complete,21/06/2019,13/06/2019,10/07/2019,06/11/2019,"10MBN40 FS","10MBN40","10MBN90 FS","10MBN90",203,238,206,259,47,55,48,60,64,,"CCGT D1_Integrated Programme Schedule;M&E;Construction;M&E Construction;Gas Turbine (MB);(10MBN) GT Fuel Oil Injection System",1,1,0.0000007867,0.0024415056,0.0059003052,19,0.0,0.0002345727,0.0068493151,0.0030769231,0.0011875,0.0062663185,0.0186615187,0.0426008969,0.0,0.0628283077
1.3.1.1.19.13-9,10MBN90,"Pre-Commissioning/Flushing/Cleaning",7112,"CCGTD1_IPS",TT_Task,"58352",-,-,-,100,TK_Complete,17/09/2019,07/09/2019,24/09/2019,06/11/2019,"10MBN80 FS,10MBN50 FS,10MBN70 FS","10MBN80,10MBN50,10MBN70","TOP1290 FS","TOP1290",215,251,216,259,50,58,50,60,77,,"CCGT D1_Integrated Programme Schedule;M&E;Construction;M&E Construction;Gas Turbine (MB);(10MBN) GT Fuel Oil Injection System",3,1,0.0000048052,0.0022380468,0.007121058,7,0.0,0.0005903195,0.0205479452,0.0030769231,0.0072534722,0.0057441253,0.0225225225,0.0156950673,0.0,0.2085948794
1.3.1.1.19.14,58351,"(10MBH) GT Cooling Air System",7112,"CCGTD1_IPS",WBS,"58347",,,,100,Complete,01/04/2019,01/04/2019,04/10/2019,29/11/2019,,,,,191,228,218,263,44,53,50,61,,,"CCGT D1_Integrated Programme Schedule;M&E;Construction;M&E Construction;Gas Turbine (MB)"
1.3.1.1.19.14-1,10MBH10,"Install Equipment/Skids/Pumps",7112,"CCGTD1_IPS",TT_Task,"58351",-,-,-,100,TK_Complete,01/04/2019,08/04/2019,09/04/2019,10/06/2019,"SI1MB-4E25 FS,Sub-GTST-180 FS,KD_C04 FS,SI1MB-4E27 FS,KD_H02 FS","SI1MB-4E25,Sub-GTST-180,KD_C04,SI1MB-4E27,KD_H02","10MBH60 FS,10MBH50 FS","10MBH60,10MBH50",191,229,192,238,44,53,45,55,50,,"CCGT D1_Integrated Programme Schedule;M&E;Construction;M&E Construction;Gas Turbine (MB);(10MBH) GT Cooling Air System",5,2,0.0000068096,0.0036622584,0.0038657172,8,0.0,0.0000999028,0.0342465753,0.0061538462,0.0102791667,0.0093994778,0.0122265122,0.0179372197,0.0,0.0076475851
1.3.1.1.19.14-2,10MBH20,"Install Large Bore Pipe/Valves/Supports",7112,"CCGTD1_IPS",TT_Task,"58351",-,-,-,100,TK_Complete,01/04/2019,01/04/2019,06/05/2019,06/09/2019,"10MBA1160 FS","10MBA1160","10MBH50 FF,10MBH30 FS,10MBH40 SS","10MBH50,10MBH30,10MBH40",191,228,196,251,44,53,45,58,50,,"CCGT D1_Integrated Programme Schedule;M&E;Construction;M&E Construction;Gas Turbine (MB);(10MBH) GT Cooling Air System",1,3,0.000000414,0.004069176,0.0002034588,35,0.0,0.0000898833,0.0068493151,0.0092307692,0.000625,0.0104438642,0.0006435006,0.0784753363,0.0,0.0035421196
1.3.1.1.19.14-3,10MBH50,"EC+I",7112,"CCGTD1_IPS",TT_Task,"58351",-,-,-,100,TK_Complete,24/06/2019,01/06/2019,15/07/2019,13/09/2019,"00MBH20 FS,10MBH20 FF,SI-BZK4-25 FS,10MBH30 FS,EDS.1080 FS,SI-BZK4-58 FS,10MBH10 FS","00MBH20,10MBH20,SI-BZK4-25,10MBH30,EDS.1080,SI-BZK4-58,10MBH10","10MBH90 FS","10MBH90",203,237,206,252,47,55,48,58,64,,"CCGT D1_Integrated Programme Schedule;M&E;Construction;M&E Construction;Gas Turbine (MB);(10MBH) GT Cooling Air System",7,1,0.0000168168,0.0028484232,0.0174974568,21,0.0,0.0002473462,0.0479452055,0.0030769231,0.0253853175,0.007310705,0.0553410553,0.0470852018,0.0,0.0680622151
1.3.1.1.19.14-4,10MBH30,"Install Small Bore Pipe/Valves/Supports",7112,"CCGTD1_IPS",TT_Task,"58351",-,-,-,100,TK_Complete,09/05/2019,09/05/2019,01/06/2019,06/09/2019,"10MBH20 FS","10MBH20","10MBH50 FS,10MBH40 FF","10MBH50,10MBH40",197,233,200,251,46,54,46,58,58,,"CCGT D1_Integrated Programme Schedule;M&E;Construction;M&E Construction;Gas Turbine (MB);(10MBH) GT Cooling Air System",1,2,0.0,0.0038657172,0.0004069176,23,0.0,0.0001053456,0.0068493151,0.0061538462,0.0,0.009921671,0.0012870013,0.0515695067,0.0,0.0098777375
1.3.1.1.19.14-5,10MBH40,"NDE",7112,"CCGTD1_IPS",TT_Task,"58351",-,-,-,100,TK_Complete,15/05/2019,15/05/2019,13/06/2019,12/09/2019,"10MBH20 SS,10MBH30 FF","10MBH20,10MBH30","10MBH60 FS","10MBH60",198,234,202,251,46,54,47,58,58,,"CCGT D1_Integrated Programme Schedule;M&E;Construction;M&E Construction;Gas Turbine (MB);(10MBH) GT Cooling Air System",2,1,0.0000003726,0.0034587996,0.0006103764,29,0.0,0.0001636445,0.0136986301,0.0030769231,0.0005625,0.0088772846,0.0019305019,0.0650224215,0.0,0.0337656156
1.3.1.1.19.14-6,10MBH60,"Line Inspection",7112,"CCGTD1_IPS",TT_Task,"58351",-,-,-,100,TK_Complete,06/09/2019,16/09/2019,11/09/2019,21/09/2019,"10MBH40 FS,10MBH10 FS","10MBH40,10MBH10","10MBH70 FS","10MBH70",214,252,215,253,50,58,50,59,75,,"CCGT D1_Integrated Programme Schedule;M&E;Construction;M&E Construction;Gas Turbine (MB);(10MBH) GT Cooling Air System",2,1,0.000002567,0.0032553408,0.0048830112,5,1.0,0.0002368871,0.0136986301,0.0030769231,0.003875,0.0083550914,0.0154440154,0.0112107623,1.0,0.0637766192
1.3.1.1.19.14-7,10MBH70,"Hydro Test",7112,"CCGTD1_IPS",TT_Task,"58351",-,-,-,100,TK_Complete,30/09/2019,21/09/2019,04/10/2019,04/10/2019,"10MBH60 FS","10MBH60","10MBH80 FS,10MBH90 FS","10MBH80,10MBH90",217,253,218,255,50,59,50,59,77,,"CCGT D1_Integrated Programme Schedule;M&E;Construction;M&E Construction;Gas Turbine (MB);(10MBH) GT Cooling Air System",1,2,0.0000021944,0.003051882,0.00508647,4,0.0,0.0002829249,0.0068493151,0.0061538462,0.0033125,0.0078328982,0.0160875161,0.0089686099,0.0,0.0826405114
1.3.1.1.19.14-8,10MBH80,"Painting/Insulation",7112,"CCGTD1_IPS",TT_Task,"58351",-,-,-,100,TK_Complete,16/08/2019,10/08/2019,21/08/2019,29/11/2019,"10MBH70 FS","10MBH70","10MBH90 FF","10MBH90",211,247,212,263,49,57,49,61,69,,"CCGT D1_Integrated Programme Schedule;M&E;Construction;M&E Construction;Gas Turbine (MB);(10MBH) GT Cooling Air System",1,1,0.0,0.0028484232,0.0052899288,5,0.0,0.0001907656,0.0068493151,0.0030769231,0.0,0.007310705,0.0167310167,0.0112107623,0.0,0.0448784144
1.3.1.1.19.14-9,10MBH90,"Pre-Commissioning/Flushing/Cleaning",7112,"CCGTD1_IPS",TT_Task,"58351",-,-,-,100,TK_Complete,17/09/2019,07/09/2019,23/09/2019,29/11/2019,"10MBH50 FS,10MBH70 FS,10MBH80 FF","10MBH50,10MBH70,10MBH80","TOP1300 FS","TOP1300",215,251,216,263,50,58,50,61,77,,"CCGT D1_Integrated Programme Schedule;M&E;Construction;M&E Construction;Gas Turbine (MB);(10MBH) GT Cooling Air System",3,1,0.0000159473,0.0026449644,0.0185147508,6,0.0,0.0005856972,0.0205479452,0.0030769231,0.0240728175,0.0067885117,0.0585585586,0.0134529148,0.0,0.2067008855
1.3.1.1.19.15,58350,"(10MBR) Exhaust Gas System",7112,"CCGTD1_IPS",WBS,"58347",,,,100,Complete,01/03/2019,01/03/2019,04/09/2019,05/10/2019,,,,,187,224,214,255,43,52,49,59,,,"CCGT D1_Integrated Programme Schedule;M&E;Construction;M&E Construction;Gas Turbine (MB)"
1.3.1.1.19.15-1,10MBR1000,"Installation of Exhaust Gas Support /Steelwork",7112,"CCGTD1_IPS",TT_Task,"58350",-,-,-,100,TK_Complete,01/03/2019,01/03/2019,23/03/2019,23/04/2019,"SI1MBR4-40 FS,Sub-GTST-180 FS,SI1MBR4-42 FS,10MBA1000 FS,KD_B06 FS,KD_C04 FS,KD_H02 FS","SI1MBR4-40,Sub-GTST-180,SI1MBR4-42,10MBA1000,KD_B06,KD_C04,KD_H02","10MBR1010 FS,10MBR1020 FS","10MBR1010,10MBR1020",187,224,190,231,43,52,44,54,48,,"CCGT D1_Integrated Programme Schedule;M&E;Construction;M&E Construction;Gas Turbine (MB);(10MBR) Exhaust Gas System",7,2,0.000006016,0.003051882,0.0042726348,22,0.0,0.000237827,0.0479452055,0.0061538462,0.00908125,0.0078328982,0.0135135135,0.0493273543,0.0,0.0641617593
1.3.1.1.19.15-2,10MBR1020,"Final Installation of Exhaust Gas Diffuser Expansion Jt (After Final Train Alignment)",7112,"CCGTD1_IPS",TT_Task,"58350",-,-,-,100,TK_Complete,18/04/2019,18/03/2019,28/05/2019,17/08/2019,"10MBR1010 FS,10MKA1170 FS,10MBR1000 FS,ECS20.1180 FS,10MBA1280 FS","10MBR1010,10MKA1170,10MBR1000,ECS20.1180,10MBA1280","10MBR1030 FS","10MBR1030",194,226,199,248,45,52,46,57,54,,"CCGT D1_Integrated Programme Schedule;M&E;Construction;M&E Construction;Gas Turbine (MB);(10MBR) Exhaust Gas System",5,1,0.000027967,0.0024415056,0.0295015259,40,0.0,0.0013721502,0.0342465753,0.0030769231,0.0422166667,0.0062663185,0.0933075933,0.0896860987,0.0,0.5289485237
1.3.1.1.19.15-3,10MBR1010,"Installation of Exhaust Gas System Diffuser Casing & Transition Piece",7112,"CCGTD1_IPS",TT_Task,"58350",-,-,-,100,TK_Complete,06/05/2019,16/05/2019,30/05/2019,23/07/2019,"SI1MBR4-40 FS,KD_B01 FS,SI1MBR4-42 FS,KD_B02 FS,10MBR1000 FS,10MBA1090 FS","SI1MBR4-40,KD_B01,SI1MBR4-42,KD_B02,10MBR1000,10MBA1090","10MBA1140 FF,10MBR1020 FS","10MBA1140,10MBR1020",196,234,200,244,45,54,46,57,57,,"CCGT D1_Integrated Programme Schedule;M&E;Construction;M&E Construction;Gas Turbine (MB);(10MBR) Exhaust Gas System",6,2,0.0000084567,0.0028484232,0.0095625636,24,0.0,0.0005197812,0.0410958904,0.0061538462,0.012765625,0.007310705,0.0302445302,0.0538116592,0.0,0.1796919477
1.3.1.1.19.15-4,10MBR1030,"Grout Exhaust Gas Diffuser Supports",7112,"CCGTD1_IPS",TT_Task,"58350",-,-,-,100,TK_Complete,31/08/2019,24/09/2019,04/09/2019,05/10/2019,"10MBR1020 FS","10MBR1020","TOP1790 FS","TOP1790",213,253,214,255,49,59,49,59,70,,"CCGT D1_Integrated Programme Schedule;M&E;Construction;M&E Construction;Gas Turbine (MB);(10MBR) Exhaust Gas System",1,1,0.0000224188,0.0022380468,0.0297049847,4,0.2,0.0012427144,0.0068493151,0.0030769231,0.0338416667,0.0057441253,0.093951094,0.0089686099,0.2,0.4759124728
1.3.1.1.19.16,58349,"(10MBA) GT Including Combustion Chamber",7112,"CCGTD1_IPS",WBS,"58347",,,,100,Complete,30/08/2018,08/08/2018,04/11/2019,30/11/2019,,,,,161,194,222,263,37,45,51,61,,,"CCGT D1_Integrated Programme Schedule;M&E;Construction;M&E Construction;Gas Turbine (MB)"
1.3.1.1.19.16-1,10MBA1000,"Check Foundation",7112,"CCGTD1_IPS",TT_Task,"58349",-,-,-,100,TK_Complete,30/08/2018,08/08/2018,03/09/2018,08/09/2018,"KD_B06 FS,Sub-GTST-180 FS,KD_C04 FS","KD_B06,Sub-GTST-180,KD_C04","10MBA4x10 FS,10MBX05 FS,10MBA1020 FS,10MBR1000 FS,10MBA18-100 FS,10MBA5x05 FS,10MBX2x05 FS","10MBA4x10,10MBX05,10MBA1020,10MBR1000,10MBA18-100,10MBA5x05,10MBX2x05",161,194,161,199,37,45,37,46,36,,"CCGT D1_Integrated Programme Schedule;M&E;Construction;M&E Construction;Gas Turbine (MB);(10MBA) GT Including Combustion Chamber",3,7,0.0000131457,0.0297049847,0.0034587996,4,0.0,0.0000871633,0.0205479452,0.0215384615,0.01984375,0.0762402089,0.0109395109,0.0089686099,0.0,0.0024275669
1.3.1.1.19.16-2,10MBA1180,"E & IC Erection of GT",7112,"CCGTD1_IPS",TT_Task,"58349",-,-,-,100,TK_Complete,02/04/2019,22/03/2019,06/06/2019,11/09/2019,"EDS.1060 FS,CP1BZP7G15 FF,10MBA1067 SS","EDS.1060,CP1BZP7G15,10MBA1067","10MBA1370 FS","10MBA1370",191,227,201,251,44,52,46,58,52,,"CCGT D1_Integrated Programme Schedule;M&E;Construction;M&E Construction;Gas Turbine (MB);(10MBA) GT Including Combustion Chamber",3,1,0.0000088818,0.0032553408,0.0063072228,65,0.0,0.0002256491,0.0205479452,0.0030769231,0.0134072421,0.0083550914,0.0199485199,0.1457399103,0.0,0.059171878
1.3.1.1.19.16-3,10MBA1067,"GT Enclosure Installation",7112,"CCGTD1_IPS",TT_Task,"58349",-,-,-,100,TK_Complete,21/01/2019,21/01/2019,16/04/2019,21/11/2019,"SI1MPB4-25 FS,SI1MPB4E25 FS","SI1MPB4-25,SI1MPB4E25","A2220 SS,TWS06.2520 FS,TOP1400 FS,SC1220 FS,10MBA1180 SS,FSS22.1180 FS,TOP2370 FS","A2220,TWS06.2520,TOP1400,SC1220,10MBA1180,FSS22.1180,TOP2370",181,218,193,261,42,50,45,61,43,,"CCGT D1_Integrated Programme Schedule;M&E;Construction;M&E Construction;Gas Turbine (MB);(10MBA) GT Including Combustion Chamber",2,7,0.0000024773,0.0056968464,0.0006103764,85,0.0,0.0001949287,0.0136986301,0.0215384615,0.0037395833,0.0146214099,0.0019305019,0.1905829596,0.0,0.0465842402
1.3.1.1.19.16-4,10MBA1350,"GT Encl E&IC Installation Incl Lighting",7112,"CCGTD1_IPS",TT_Task,"58349",-,-,-,100,TK_Complete,20/05/2019,20/05/2019,06/06/2019,12/09/2019,"10MBA1290 FS,EDS.1060 FS","10MBA1290,EDS.1060","10MBA1370 FS","10MBA1370",198,235,201,251,46,54,46,58,59,,"CCGT D1_Integrated Programme Schedule;M&E;Construction;M&E Construction;Gas Turbine (MB);(10MBA) GT Including Combustion Chamber",2,1,0.0000180735,0.0032553408,0.0221770092,17,0.0,0.0001968884,0.0136986301,0.0030769231,0.0272822421,0.0083550914,0.0701415701,0.0381165919,0.0,0.0473872441
1.3.1.1.19.16-5,10MBA1160,"Ready for Pre-assembling Pipework MBA/MBP/ MBX/ EKG Piping",7112,"CCGTD1_IPS",TT_Mile,"58349",-,-,-,100,TK_Complete,25/03/2019,01/01/2019,25/03/2019,01/01/2019,"","","10MBX2x20 FS,10MBA4x20 FS,10MBN20 FS,10MBX20 FS,10MBA5x20 FS,10MBV1010 FS,10MBV1020 FS,10MBH20 FS,10MBV1090 FS","10MBX2x20,10MBA4x20,10MBN20,10MBX20,10MBA5x20,10MBV1010,10MBV1020,10MBH20,10MBV1090",190,215,190,215,44,50,44,50,49,,"CCGT D1_Integrated Programme Schedule;M&E;Construction;M&E Construction;Gas Turbine (MB);(10MBA) GT Including Combustion Chamber",0,9,0.0,0.017293998,0.0,0,1.0,0.0000812387,0.0,0.0276923077,0.0,0.044386423,0.0,0.0,1.0,0.0
1.3.1.1.19.16-6,10MBA1210,"Insulate Compressor Vane Carrier",7112,"CCGTD1_IPS",TT_Task,"58349",-,-,-,100,TK_Complete,31/07/2019,24/08/2019,06/08/2019,03/09/2019,"10MBA1200 FS","10MBA1200","10MBA1270 FS","10MBA1270",209,249,209,250,48,58,48,58,67,,"CCGT D1_Integrated Programme Schedule;M&E;Construction;M&E Construction;Gas Turbine (MB);(10MBA) GT Including Combustion Chamber",1,1,0.0000134149,0.0034587996,0.0134282808,6,0.6,0.0001573493,0.0068493151,0.0030769231,0.02025,0.0088772846,0.0424710425,0.0134529148,0.6,0.0311861559
1.3.1.1.19.16-7,10MBA1290,"Complete Insulation Installation",7112,"CCGTD1_IPS",TT_Task,"58349",-,-,-,100,TK_Complete,30/04/2019,24/05/2019,23/07/2019,12/09/2019,"10MBA1280 FS","10MBA1280","10MBA1350 FS","10MBA1350",195,236,207,251,45,55,48,58,55,,"CCGT D1_Integrated Programme Schedule;M&E;Construction;M&E Construction;Gas Turbine (MB);(10MBA) GT Including Combustion Chamber",1,1,0.00002153,0.0034587996,0.0217700916,84,0.0,0.0001306882,0.0068493151,0.0030769231,0.0325,0.0088772846,0.0688545689,0.1883408072,0.0,0.0202618171
1.3.1.1.19.16-8,10MBA1035,"Position Support Bridge",7112,"CCGTD1_IPS",TT_Task,"58349",-,-,-,100,TK_Complete,17/10/2018,17/09/2018,17/10/2018,29/09/2018,"10MBA1030 FS","10MBA1030","10MBA1060 FS,10MBA1110 FS","10MBA1060,10MBA1110",168,200,168,202,39,46,39,47,37,,"CCGT D1_Integrated Programme Schedule;M&E;Construction;M&E Construction;Gas Turbine (MB);(10MBA) GT Including Combustion Chamber",1,2,0.0000118415,0.0164801628,0.0042726348,0,0.0,0.0000812387,0.0068493151,0.0061538462,0.017875,0.0422976501,0.0135135135,0.0,0.0,0.0
1.3.1.1.19.16-9,10MBA1360,"Gas Turbine FInal Check",7112,"CCGTD1_IPS",TT_Task,"58349",-,-,-,100,TK_Complete,03/10/2019,14/09/2019,12/10/2019,30/11/2019,"10MBA1340 FS,10MBA1310 FS,10MBA18-110 FS","10MBA1340,10MBA1310,10MBA18-110","10MBA1370 FS","10MBA1370",218,252,219,263,50,58,51,61,78,,"CCGT D1_Integrated Programme Schedule;M&E;Construction;M&E Construction;Gas Turbine (MB);(10MBA) GT Including Combustion Chamber",3,1,0.0000130008,0.0032553408,0.0240081384,9,0.0,0.0004272995,0.0205479452,0.0030769231,0.019625,0.0083550914,0.0759330759,0.0201793722,0.0,0.141797754
1.3.1.1.19.16-10,10MBA1140,"Install Secondary Air Piping System",7112,"CCGTD1_IPS",TT_Task,"58349",-,-,-,100,TK_Complete,18/04/2019,30/11/2018,27/04/2019,12/01/2019,"10MBR1010 FF","10MBR1010","","",194,211,195,217,45,49,45,50,54,,"CCGT D1_Integrated Programme Schedule;M&E;Construction;M&E Construction;Gas Turbine (MB);(10MBA) GT Including Combustion Chamber",1,0,0.0,0.0,0.0097660224,9,0.0,0.0001625339,0.0068493151,0.0,0.0,0.0,0.0308880309,0.0201793722,0.0,0.0333105576
1.3.1.1.19.16-11,10MBA1020,"Lower Support Block Centering Guide to Foundation Pit",7112,"CCGTD1_IPS",TT_Task,"58349",-,-,-,100,TK_Complete,11/10/2018,15/09/2018,15/10/2018,15/09/2018,"10MBA1000 FS,SI1MB-4E25 FS,KD_C04 FS","10MBA1000,SI1MB-4E25,KD_C04","10MBA1030 FS","10MBA1030",167,200,167,200,39,46,39,46,37,,"CCGT D1_Integrated Programme Schedule;M&E;Construction;M&E Construction;Gas Turbine (MB);(10MBA) GT Including Combustion Chamber",3,1,0.0000109099,0.0197355036,0.0038657172,4,1.0,0.0000901661,0.0205479452,0.0030769231,0.01646875,0.0506527415,0.0122265122,0.0089686099,1.0,0.0036579692
1.3.1.1.19.16-12,10MBA1030,"Install & Grout Compressor Supports",7112,"CCGTD1_IPS",TT_Task,"58349",-,-,-,100,TK_Complete,16/10/2018,13/09/2018,20/10/2018,29/09/2018,"10MBA1020 FS","10MBA1020","10MBA1035 FS,10MBA1040 FS","10MBA1035,10MBA1040",167,199,168,202,39,46,39,47,37,,"CCGT D1_Integrated Programme Schedule;M&E;Construction;M&E Construction;Gas Turbine (MB);(10MBA) GT Including Combustion Chamber",1,2,0.000014098,0.0195320448,0.004069176,4,0.0,0.0001579928,0.0068493151,0.0061538462,0.02128125,0.0501305483,0.0128700129,0.0089686099,0.0,0.0314498278
1.3.1.1.19.16-13,10MBA1040,"Install & Grout Turbine Supports Blocks",7112,"CCGTD1_IPS",TT_Task,"58349",-,-,-,100,TK_Complete,22/10/2018,17/09/2018,26/10/2018,29/09/2018,"10MBA1030 FS","10MBA1030","10MBA1050 FS","10MBA1050",168,200,169,202,39,46,39,47,37,,"CCGT D1_Integrated Programme Schedule;M&E;Construction;M&E Construction;Gas Turbine (MB);(10MBA) GT Including Combustion Chamber",1,1,0.0000044923,0.0191251272,0.0042726348,4,0.6,0.0002157164,0.0068493151,0.0030769231,0.00678125,0.0490861619,0.0135135135,0.0089686099,0.6,0.0551019842
1.3.1.1.19.16-14,10MBA1050,"Install  Turbine Supports",7112,"CCGTD1_IPS",TT_Task,"58349",-,-,-,100,TK_Complete,23/10/2018,17/09/2018,24/10/2018,29/09/2018,"10MBA1040 FS","10MBA1040","10MBA1060 FS,10MBU10 FS","10MBA1060,10MBU10",168,200,169,202,39,46,39,47,37,,"CCGT D1_Integrated Programme Schedule;M&E;Construction;M&E Construction;Gas Turbine (MB);(10MBA) GT Including Combustion Chamber",1,2,0.0000074734,0.0189216684,0.0044760936,1,0.0,0.0002648974,0.0068493151,0.0061538462,0.01128125,0.0485639687,0.0141570142,0.0022421525,0.0,0.0752537813
1.3.1.1.19.16-15,10MBA1060,"Set Combustion Turbine",7112,"CCGTD1_IPS",TT_Task,"58349",-,-,-,100,TK_Complete,03/11/2018,03/10/2018,07/11/2018,06/10/2018,"10MBL1020 FS,10MBX05 FS,10MBA1050 FS,10MBA1035 FS,10MBX2x05 FS,SI1MBA4-25 FS,10MBV1000 FS,10MBA5x05 FS","10MBL1020,10MBX05,10MBA1050,10MBA1035,10MBX2x05,SI1MBA4-25,10MBV1000,10MBA5x05","10MBA1070 FS","10MBA1070",170,202,171,203,39,47,39,47,38,,"CCGT D1_Integrated Programme Schedule;M&E;Construction;M&E Construction;Gas Turbine (MB);(10MBA) GT Including Combustion Chamber",8,1,0.0000527486,0.016276704,0.0075279756,4,1.0,0.0002432769,0.0547945205,0.0030769231,0.079625,0.0417754569,0.0238095238,0.0089686099,1.0,0.0663948576
1.3.1.1.19.16-16,10MBA1070,"Align Support Block Centering Guide",7112,"CCGTD1_IPS",TT_Task,"58349",-,-,-,100,TK_Complete,07/11/2018,14/09/2018,09/11/2018,15/09/2018,"10MBA1060 FS","10MBA1060","10MBA1080 FS","10MBA1080",171,200,171,200,39,46,39,46,38,,"CCGT D1_Integrated Programme Schedule;M&E;Construction;M&E Construction;Gas Turbine (MB);(10MBA) GT Including Combustion Chamber",1,1,0.0000544875,0.0160732452,0.0077314344,2,1.0,0.0002883165,0.0068493151,0.0030769231,0.08225,0.0412532637,0.0244530245,0.0044843049,1.0,0.0848497191
1.3.1.1.19.16-17,10MBA1080,"Grout Support Block Centering Guide",7112,"CCGTD1_IPS",TT_Task,"58349",-,-,-,100,TK_Complete,09/11/2018,09/10/2018,12/11/2018,10/10/2018,"10MBA1070 FS","10MBA1070","SC1040 FS,10MBA1090 FS","SC1040,10MBA1090",171,203,171,203,39,47,40,47,38,,"CCGT D1_Integrated Programme Schedule;M&E;Construction;M&E Construction;Gas Turbine (MB);(10MBA) GT Including Combustion Chamber",1,2,0.0000561437,0.0158697864,0.0079348932,3,1.0,0.0003267523,0.0068493151,0.0061538462,0.08475,0.0407310705,0.0250965251,0.0067264574,1.0,0.1005987175
1.3.1.1.19.16-18,10MBA1090,"Align Combustion Turbine to Foundation Axis",7112,"CCGTD1_IPS",TT_Task,"58349",-,-,-,100,TK_Complete,12/11/2018,06/10/2018,15/11/2018,10/10/2018,"10MBA1080 FS","10MBA1080","10MBA1120 FS,10MBA1130 FS,10MBR1010 FS","10MBA1120,10MBA1130,10MBR1010",171,203,172,203,40,47,40,47,38,,"CCGT D1_Integrated Programme Schedule;M&E;Construction;M&E Construction;Gas Turbine (MB);(10MBA) GT Including Combustion Chamber",1,3,0.0000560609,0.0154628688,0.008138352,3,1.0,0.000359556,0.0068493151,0.0092307692,0.084625,0.0396866841,0.0257400257,0.0067264574,1.0,0.1140399637
1.3.1.1.19.16-19,10MBA1100,"Generator in Position - Interface Date",7112,"CCGTD1_IPS",TT_FinMile,"58349",-,-,-,100,TK_Complete,08/10/2018,04/10/2018,08/10/2018,04/10/2018,"10MKA1030 FS,10MA-1230 FS,SI1MKA4-25 FS,10MKA1050 FS,10MKA1030 SS,10MKA1010 FS","10MKA1030,10MA-1230,SI1MKA4-25,10MKA1050,10MKA1030,10MKA1010","10MBA1120 FS","10MBA1120",166,202,166,202,38,47,38,47,37,,"CCGT D1_Integrated Programme Schedule;M&E;Construction;M&E Construction;Gas Turbine (MB);(10MBA) GT Including Combustion Chamber",5,1,0.000058069,0.0120040692,0.0079348932,0,1.0,0.0000812387,0.0342465753,0.0030769231,0.08765625,0.0308093995,0.0250965251,0.0,1.0,0.0
1.3.1.1.19.16-20,10MBA1120,"Install Intermediate Shaft & Center to Combustion Turbine",7112,"CCGTD1_IPS",TT_Task,"58349",-,-,-,100,TK_Complete,28/12/2018,16/11/2018,31/12/2018,21/11/2018,"10MBA1090 FS,10MBA1100 FS","10MBA1090,10MBA1100","10MBA1200 FS,10MBA1190 FS,10MBL1010 FS","10MBA1200,10MBA1190,10MBL1010",178,209,178,209,41,48,41,48,43,,"CCGT D1_Integrated Programme Schedule;M&E;Construction;M&E Construction;Gas Turbine (MB);(10MBA) GT Including Combustion Chamber",2,3,0.0000966988,0.0118006104,0.0130213632,3,0.6,0.0001774262,0.0136986301,0.0092307692,0.14596875,0.0302872063,0.0411840412,0.0067264574,0.6,0.0394126311
1.3.1.1.19.16-21,10MBA1190,"Common Coupling Alignment GT/GEN/ST",7112,"CCGTD1_IPS",TT_Task,"58349",-,-,-,100,TK_Complete,27/04/2019,05/03/2019,10/05/2019,12/04/2019,"10MKA1170 FS,10MBA1120 FS","10MKA1170,10MBA1120","10MBA1220 SS","10MBA1220",195,224,197,230,45,52,46,53,55,,"CCGT D1_Integrated Programme Schedule;M&E;Construction;M&E Construction;Gas Turbine (MB);(10MBA) GT Including Combustion Chamber",2,1,0.0001129292,0.0103763988,0.0209562564,13,0.0,0.0001932802,0.0136986301,0.0030769231,0.17046875,0.0266318538,0.0662805663,0.0291479821,0.0,0.0459087849
1.3.1.1.19.16-22,10MBA1200,"Align & Welding Spur of the Support Block of Centering Guide",7112,"CCGTD1_IPS",TT_Task,"58349",-,-,-,100,TK_Complete,30/01/2019,10/10/2018,01/02/2019,11/10/2018,"10MBA1120 FS","10MBA1120","10MBA1210 FS","10MBA1210",183,203,183,203,42,47,42,47,46,,"CCGT D1_Integrated Programme Schedule;M&E;Construction;M&E Construction;Gas Turbine (MB);(10MBA) GT Including Combustion Chamber",1,1,0.0000154023,0.0036622584,0.013224822,2,1.0,0.0000894028,0.0068493151,0.0030769231,0.02325,0.0093994778,0.0418275418,0.0044843049,1.0,0.0033452066
1.3.1.1.19.16-23,10MBA1220,"Weld Lugs of Compressor Supports",7112,"CCGTD1_IPS",TT_Task,"58349",-,-,-,100,TK_Complete,01/04/2019,26/03/2019,08/04/2019,08/04/2019,"10MBA1190 SS","10MBA1190","10MBA1230 FS,10MBU20 FS,10MBA1260 FS,SC1050 FS","10MBA1230,10MBU20,10MBA1260,SC1050",191,227,192,229,44,53,44,53,50,,"CCGT D1_Integrated Programme Schedule;M&E;Construction;M&E Construction;Gas Turbine (MB);(10MBA) GT Including Combustion Chamber",1,4,0.0001107347,0.01017294,0.0211597152,7,0.4,0.0002432476,0.0068493151,0.0123076923,0.16715625,0.0261096606,0.0669240669,0.0156950673,0.4,0.0663828124
1.3.1.1.19.16-24,10MBA1230,"Weld & Pretension Turbine Supports",7112,"CCGTD1_IPS",TT_Task,"58349",-,-,-,100,TK_Complete,08/04/2019,08/04/2019,11/04/2019,11/04/2019,"10MBA1220 FS","10MBA1220","10MBU20 FS,10MBA1260 FS,SC1050 FS,10MBA1280 FS","10MBU20,10MBA1260,SC1050,10MBA1280",192,229,193,229,44,53,45,53,53,,"CCGT D1_Integrated Programme Schedule;M&E;Construction;M&E Construction;Gas Turbine (MB);(10MBA) GT Including Combustion Chamber",1,4,0.0000487324,0.0099694812,0.021363174,3,1.0,0.0001033678,0.0068493151,0.0123076923,0.0735625,0.0255874674,0.0675675676,0.0067264574,1.0,0.0090673414
1.3.1.1.19.16-25,10MBA1260,"Connect Exhaust Gas Line to Exhaust Gas Diffuser",7112,"CCGTD1_IPS",TT_Task,"58349",-,-,-,100,TK_Complete,11/04/2019,15/03/2019,16/04/2019,23/03/2019,"10MBA1220 FS,10MBA1230 FS","10MBA1220,10MBA1230","10MBA1270 FS","10MBA1270",193,226,193,227,45,52,45,53,53,,"CCGT D1_Integrated Programme Schedule;M&E;Construction;M&E Construction;Gas Turbine (MB);(10MBA) GT Including Combustion Chamber",2,1,0.0000118829,0.0034587996,0.0215666328,5,0.6,0.0001332828,0.0136986301,0.0030769231,0.0179375,0.0088772846,0.0682110682,0.0112107623,0.6,0.0213249719
1.3.1.1.19.16-26,10MBA1270,"Install Actuators for Vane Pitch Controllers (IGV/VGv1/2/3)",7112,"CCGTD1_IPS",TT_Task,"58349",-,-,-,100,TK_Complete,07/06/2019,12/06/2019,14/06/2019,25/07/2019,"10MBA1260 FS,10MBA1210 FS","10MBA1260,10MBA1210","10MBX10 FS","10MBX10",201,238,202,244,46,55,47,57,62,,"CCGT D1_Integrated Programme Schedule;M&E;Construction;M&E Construction;Gas Turbine (MB);(10MBA) GT Including Combustion Chamber",2,1,0.0000221925,0.0032553408,0.0221770092,7,0.0,0.0003285389,0.0136986301,0.0030769231,0.0335,0.0083550914,0.0701415701,0.0156950673,0.0,0.1013307714
1.3.1.1.19.16-27,10MBA1280,"Check Alignment of Shaft Assembly",7112,"CCGTD1_IPS",TT_Task,"58349",-,-,-,100,TK_Complete,11/04/2019,25/03/2019,15/04/2019,11/04/2019,"10MBA1230 FS","10MBA1230","10MBA1300 FS,10MBA1290 FS,SC1050 FS,10MBR1020 FS","10MBA1300,10MBA1290,SC1050,10MBR1020",193,227,193,229,45,53,45,53,53,,"CCGT D1_Integrated Programme Schedule;M&E;Construction;M&E Construction;Gas Turbine (MB);(10MBA) GT Including Combustion Chamber",1,4,0.0000452752,0.0056968464,0.0215666328,4,0.0,0.0000933686,0.0068493151,0.0123076923,0.06834375,0.0146214099,0.0682110682,0.0089686099,0.0,0.004970189
1.3.1.1.19.16-28,10MBA1300,"Position & Align Coupling Flanges, Bore Out & Hone Bolt Holes",7112,"CCGTD1_IPS",TT_Task,"58349",-,-,-,100,TK_Complete,12/04/2019,12/04/2019,23/04/2019,26/04/2019,"10MBA1280 FS,10MKA1220 FS","10MBA1280,10MKA1220","10MBA1310 FS","10MBA1310",193,230,194,232,45,53,45,54,53,,"CCGT D1_Integrated Programme Schedule;M&E;Construction;M&E Construction;Gas Turbine (MB);(10MBA) GT Including Combustion Chamber",2,1,0.0000280718,0.0042726348,0.0225839268,11,0.8,0.0001020676,0.0136986301,0.0030769231,0.042375,0.0109660574,0.0714285714,0.0246636771,0.8,0.0085345885
1.3.1.1.19.16-29,10MBA1310,"Install Compressor Bearing Cover & Shaft Turning Gear Unit",7112,"CCGTD1_IPS",TT_Task,"58349",-,-,-,100,TK_Complete,27/04/2019,26/03/2019,30/04/2019,31/08/2019,"10MBA1300 FS","10MBA1300","10MBA1360 FS,10MBA1320 FS","10MBA1360,10MBA1320",195,227,195,250,45,53,45,58,55,,"CCGT D1_Integrated Programme Schedule;M&E;Construction;M&E Construction;Gas Turbine (MB);(10MBA) GT Including Combustion Chamber",1,2,0.0000243041,0.004069176,0.0227873856,3,0.0,0.0001681212,0.0068493151,0.0061538462,0.0366875,0.0104438642,0.0720720721,0.0067264574,0.0,0.0355999513
1.3.1.1.19.16-30,10MBA1320,"Install Shaft Position Sensors for HCO System",7112,"CCGTD1_IPS",TT_Task,"58349",-,-,-,100,TK_Complete,31/07/2019,24/08/2019,01/08/2019,24/08/2019,"10MBA1310 FS","10MBA1310","10MBA1330 FS","10MBA1330",209,249,209,249,48,58,48,58,67,,"CCGT D1_Integrated Programme Schedule;M&E;Construction;M&E Construction;Gas Turbine (MB);(10MBA) GT Including Combustion Chamber",1,1,0.0000093573,0.0038657172,0.0229908444,1,1.0,0.0000955492,0.0068493151,0.0030769231,0.014125,0.009921671,0.0727155727,0.0022421525,1.0,0.0058636929
1.3.1.1.19.16-31,10MBA1330,"Install Speed Measuring Facilities",7112,"CCGTD1_IPS",TT_Task,"58349",-,-,-,100,TK_Complete,01/08/2019,28/08/2019,02/08/2019,31/08/2019,"10MBA1320 FS","10MBA1320","10MBA1340 FS","10MBA1340",209,249,209,250,48,58,48,58,67,,"CCGT D1_Integrated Programme Schedule;M&E;Construction;M&E Construction;Gas Turbine (MB);(10MBA) GT Including Combustion Chamber",1,1,0.0000054239,0.0036622584,0.0231943032,1,0.8,0.0001625816,0.0068493151,0.0030769231,0.0081875,0.0093994778,0.0733590734,0.0022421525,0.8,0.033330073
1.3.1.1.19.16-32,10MBA1340,"Install Vibration Sensors",7112,"CCGTD1_IPS",TT_Task,"58349",-,-,-,100,TK_Complete,02/08/2019,28/08/2019,05/08/2019,28/08/2019,"10MBA1330 FS","10MBA1330","10MBA1360 FS,10MBA1370 FS","10MBA1360,10MBA1370",209,249,209,249,48,58,48,58,68,,"CCGT D1_Integrated Programme Schedule;M&E;Construction;M&E Construction;Gas Turbine (MB);(10MBA) GT Including Combustion Chamber",1,2,0.0000014077,0.0034587996,0.023397762,3,1.0,0.0002196305,0.0068493151,0.0061538462,0.002125,0.0088772846,0.074002574,0.0067264574,1.0,0.0567057656
1.3.1.1.19.16-33,10MBA1370,"Completion of Gas Turbine",7112,"CCGTD1_IPS",TT_Task,"58349",-,-,-,100,TK_Complete,26/10/2019,28/09/2019,04/11/2019,21/11/2019,"10MBA1180 FS,10MBA1360 FS,10MBA1350 FS,10MBA1340 FS","10MBA1180,10MBA1360,10MBA1350,10MBA1340","TOP1260 FS","TOP1260",221,254,222,261,51,59,51,61,80,,"CCGT D1_Integrated Programme Schedule;M&E;Construction;M&E Construction;Gas Turbine (MB);(10MBA) GT Including Combustion Chamber",4,1,0.0000376375,0.003051882,0.0309257375,9,0.0,0.0008982681,0.0273972603,0.0030769231,0.0568144841,0.0078328982,0.0978120978,0.0201793722,0.0,0.3347762182
1.3.1.1.19.16-34,10MBA1130,"Install Clamps for Fuel Gas Manifolds",7112,"CCGTD1_IPS",TT_Task,"58349",-,-,-,100,TK_Complete,28/12/2018,26/10/2018,04/01/2019,15/11/2018,"10MBA1090 FS","10MBA1090","10MBA1150 FS","10MBA1150",178,206,179,208,41,48,41,48,43,,"CCGT D1_Integrated Programme Schedule;M&E;Construction;M&E Construction;Gas Turbine (MB);(10MBA) GT Including Combustion Chamber",1,1,0.0000114689,0.0046795524,0.0083418108,7,0.0,0.0001443098,0.0068493151,0.0030769231,0.0173125,0.0120104439,0.0263835264,0.0156950673,0.0,0.0258432391
1.3.1.1.19.16-35,10MBA1150,"Install Fuel Gas Manifold Pilot Gas",7112,"CCGTD1_IPS",TT_Task,"58349",-,-,-,100,TK_Complete,04/01/2019,06/11/2018,09/01/2019,16/11/2018,"10MBA1130 FS","10MBA1130","10MBA1170 FS","10MBA1170",179,207,180,209,41,48,42,48,43,,"CCGT D1_Integrated Programme Schedule;M&E;Construction;M&E Construction;Gas Turbine (MB);(10MBA) GT Including Combustion Chamber",1,1,0.0000106822,0.0044760936,0.0085452696,5,0.2,0.0002041317,0.0068493151,0.0030769231,0.016125,0.0114882507,0.027027027,0.0112107623,0.2,0.050355182
1.3.1.1.19.16-36,10MBA1170,"Install Fuel Gas Manifold Stages A/B/C/D",7112,"CCGTD1_IPS",TT_Task,"58349",-,-,-,100,TK_Complete,09/01/2019,06/11/2018,15/01/2019,16/11/2018,"10MBA1150 FS","10MBA1150","10MBA1110 FS","10MBA1110",180,207,180,209,42,48,42,48,43,,"CCGT D1_Integrated Programme Schedule;M&E;Construction;M&E Construction;Gas Turbine (MB);(10MBA) GT Including Combustion Chamber",1,1,0.0000098127,0.0042726348,0.0087487284,6,1.0,0.0002551118,0.0068493151,0.0030769231,0.0148125,0.0109660574,0.0276705277,0.0134529148,1.0,0.0712441632
1.3.1.1.19.16-37,10MBA1110,"Install Weld Support Bridge & Clamps for Fuel Gas Manifolds",7112,"CCGTD1_IPS",TT_Task,"58349",-,-,-,100,TK_Complete,27/04/2019,20/04/2019,03/05/2019,26/06/2019,"10MBA1035 FS,10MBA1170 FS","10MBA1035,10MBA1170","10MBP20 FS","10MBP20",195,231,196,240,45,53,45,56,55,,"CCGT D1_Integrated Programme Schedule;M&E;Construction;M&E Construction;Gas Turbine (MB);(10MBA) GT Including Combustion Chamber",2,1,0.0000176795,0.004069176,0.0089521872,6,0.0,0.0003403949,0.0136986301,0.0030769231,0.0266875,0.0104438642,0.0283140283,0.0134529148,0.0,0.1061887394
1.3.1.1.19.17,58348,"(10MBL) Air Intake System",7112,"CCGTD1_IPS",WBS,"58347",,,,100,Complete,26/10/2018,05/09/2018,19/09/2019,10/10/2019,,,,,169,198,216,255,39,46,50,59,,,"CCGT D1_Integrated Programme Schedule;M&E;Construction;M&E Construction;Gas Turbine (MB)"
1.3.1.1.19.17-1,10MBL1020,"Set Air Inlet Duct Lower Plenum on Foundation MBL",7112,"CCGTD1_IPS",TT_Task,"58348",-,-,-,100,TK_Complete,15/04/2019,15/04/2019,27/04/2019,03/05/2019,"10MBL1000 FS,KD_C04 FS","10MBL1000,KD_C04","10MBL1010 FS,10MBA1060 FS,10MBL1110 FS","10MBL1010,10MBA1060,10MBL1110",193,230,195,233,45,53,45,54,54,,"CCGT D1_Integrated Programme Schedule;M&E;Construction;M&E Construction;Gas Turbine (MB);(10MBL) Air Intake System",2,3,0.0000113447,0.0166836216,0.004069176,12,0.4,0.0001427875,0.0136986301,0.0092307692,0.017125,0.0428198433,0.0128700129,0.0269058296,0.4,0.0252194773
1.3.1.1.19.17-2,10MBL1050,"Insulation Anti Icing MBL",7112,"CCGTD1_IPS",TT_Task,"58348",-,-,-,100,TK_Complete,12/07/2019,03/06/2019,06/08/2019,24/07/2019,"10MBL1040 FS","10MBL1040","10MBL1070 FS","10MBL1070",206,237,209,244,48,55,48,57,66,,"CCGT D1_Integrated Programme Schedule;M&E;Construction;M&E Construction;Gas Turbine (MB);(10MBL) Air Intake System",1,1,0.0000008281,0.002034588,0.001017294,25,0.0,0.0002476183,0.0068493151,0.0030769231,0.00125,0.0052219321,0.0032175032,0.0560538117,0.0,0.0681737104
1.3.1.1.19.17-3,10MBL1060,"E&IC MBL",7112,"CCGTD1_IPS",TT_Task,"58348",-,-,-,100,TK_Complete,29/04/2019,29/04/2019,14/06/2019,14/09/2019,"10MBL1090 FS,EDS.1060 FS","10MBL1090,EDS.1060","10MBL1070 FS","10MBL1070",195,232,202,252,45,54,47,58,55,,"CCGT D1_Integrated Programme Schedule;M&E;Construction;M&E Construction;Gas Turbine (MB);(10MBL) Air Intake System",2,1,0.0000010305,0.002034588,0.0008138352,46,0.0,0.0001760864,0.0136986301,0.0030769231,0.0015555556,0.0052219321,0.0025740026,0.1031390135,0.0,0.0388636738
1.3.1.1.19.17-4,10MBL1000,"Pre-assemble of Air Intake System",7112,"CCGTD1_IPS",TT_Task,"58348",-,-,-,100,TK_Complete,15/02/2019,25/03/2019,04/03/2019,26/04/2019,"Sub-GTST-180 FS,SI1MBL4-40 FS,KD_C04 FS,10MBL1130 FF","Sub-GTST-180,SI1MBL4-40,KD_C04,10MBL1130","10MBL1020 FS,10MBL1010 FS","10MBL1020,10MBL1010",185,227,187,232,43,53,43,54,47,,"CCGT D1_Integrated Programme Schedule;M&E;Construction;M&E Construction;Gas Turbine (MB);(10MBL) Air Intake System",4,2,0.0000094608,0.0168870804,0.0038657172,17,0.0,0.0001964,0.0273972603,0.0061538462,0.01428125,0.0433420366,0.0122265122,0.0381165919,0.0,0.0471871124
1.3.1.1.19.17-5,10MBL1010,"Installation of Air Inlet Duct (Inlet Plenum Damper and Transition piece)",7112,"CCGTD1_IPS",TT_Task,"58348",-,-,-,100,TK_Complete,15/05/2019,13/05/2019,06/06/2019,22/06/2019,"10MBL1020 FS,10MBL1000 FS,10MBA1120 FS,10MBL1100 FS","10MBL1020,10MBL1000,10MBA1120,10MBL1100","10MBL1030 FS","10MBL1030",198,234,201,240,46,54,46,56,58,,"CCGT D1_Integrated Programme Schedule;M&E;Construction;M&E Construction;Gas Turbine (MB);(10MBL) Air Intake System",4,1,0.0000086948,0.0022380468,0.0136317396,22,0.0,0.0004653088,0.0273972603,0.0030769231,0.013125,0.0057441253,0.0431145431,0.0493273543,0.0,0.157371987
1.3.1.1.19.17-6,10MBL1030,"Installation of Air Inlet Duct (Remaining)",7112,"CCGTD1_IPS",TT_Task,"58348",-,-,-,100,TK_Complete,06/06/2019,15/05/2019,02/07/2019,31/08/2019,"10MBL1010 FS","10MBL1010","10MBL1070 FS","10MBL1070",201,234,204,250,46,54,47,58,62,,"CCGT D1_Integrated Programme Schedule;M&E;Construction;M&E Construction;Gas Turbine (MB);(10MBL) Air Intake System",1,1,0.0000063348,0.002034588,0.0138351984,26,0.0,0.0004774344,0.0068493151,0.0030769231,0.0095625,0.0052219321,0.0437580438,0.0582959641,0.0,0.162340442
1.3.1.1.19.17-7,10MBL1040,"Installation of Air Intake Cone and Filters",7112,"CCGTD1_IPS",TT_Task,"58348",-,-,-,100,TK_Complete,01/06/2019,20/04/2019,26/06/2019,17/08/2019,"10MBL1090 FS,EDS.1020 FS","10MBL1090,EDS.1020","10MBL1050 FS","10MBL1050",200,231,204,248,46,53,47,57,60,,"CCGT D1_Integrated Programme Schedule;M&E;Construction;M&E Construction;Gas Turbine (MB);(10MBL) Air Intake System",2,1,0.0000005797,0.0022380468,0.0008138352,25,0.0,0.000195468,0.0136986301,0.0030769231,0.000875,0.0057441253,0.0025740026,0.0560538117,0.0,0.0468052459
1.3.1.1.19.17-8,10MBL1080,"Install Filter House Support Steel",7112,"CCGTD1_IPS",TT_Task,"58348",-,-,-,100,TK_Complete,01/04/2019,23/01/2019,10/05/2019,28/02/2019,"","","10MBL1090 FS","10MBL1090",191,218,197,223,44,51,46,52,50,,"CCGT D1_Integrated Programme Schedule;M&E;Construction;M&E Construction;Gas Turbine (MB);(10MBL) Air Intake System",0,1,0.0,0.0028484232,0.0,39,1.0,0.0000812387,0.0,0.0030769231,0.0,0.007310705,0.0,0.0874439462,1.0,0.0
1.3.1.1.19.17-9,10MBL1090,"Install Filter House",7112,"CCGTD1_IPS",TT_Task,"58348",-,-,-,100,TK_Complete,01/04/2019,01/04/2019,10/05/2019,17/08/2019,"10MBL1080 FS","10MBL1080","10MBL1040 FS,10MBL1060 FS","10MBL1040,10MBL1060",191,228,197,248,44,53,46,57,50,,"CCGT D1_Integrated Programme Schedule;M&E;Construction;M&E Construction;Gas Turbine (MB);(10MBL) Air Intake System",1,2,0.0000005383,0.0026449644,0.0002034588,39,0.0,0.0001503957,0.0068493151,0.0061538462,0.0008125,0.0067885117,0.0006435006,0.0874439462,0.0,0.0283369572
1.3.1.1.19.17-10,10MBL1070,"Pre-Commissioning/Flushing/Cleaning",7112,"CCGTD1_IPS",TT_Task,"58348",-,-,-,100,TK_Complete,31/08/2019,07/09/2019,19/09/2019,10/10/2019,"10MBL1060 FS,10MBL1050 FS,10MBL1030 FS,10MBL1110 FS","10MBL1060,10MBL1050,10MBL1030,10MBL1110","TOP1360 FS","TOP1360",213,251,216,255,49,58,50,59,70,,"CCGT D1_Integrated Programme Schedule;M&E;Construction;M&E Construction;Gas Turbine (MB);(10MBL) Air Intake System",4,1,0.0000085246,0.0018311292,0.0156663276,19,0.0,0.0009399484,0.0273972603,0.0030769231,0.0128680556,0.0046997389,0.0495495495,0.0426008969,0.0,0.3518546482
1.3.1.1.19.17-11,10MBL1100,"Installation of Inlet Air Duct Support Platform",7112,"CCGTD1_IPS",TT_Task,"58348",-,-,-,100,TK_Complete,01/04/2019,01/04/2019,18/04/2019,11/06/2019,"KD_C04 FS,KD_C17 FS,KD_D02 FS,10MBL1130 FS","KD_C04,KD_C17,KD_D02,10MBL1130","10MBL1010 FS","10MBL1010",191,228,194,238,44,53,45,55,50,,"CCGT D1_Integrated Programme Schedule;M&E;Construction;M&E Construction;Gas Turbine (MB);(10MBL) Air Intake System",4,1,0.0000006418,0.0024415056,0.0018311292,17,0.0,0.0001234341,0.0273972603,0.0030769231,0.00096875,0.0062663185,0.0057915058,0.0381165919,0.0,0.0172894645
1.3.1.1.19.17-12,10MBL1110,"Lower Half Secondary Air Piping",7112,"CCGTD1_IPS",TT_Task,"58348",-,-,-,100,TK_Complete,27/04/2019,27/04/2019,04/05/2019,06/05/2019,"10MBL1020 FS","10MBL1020","10MBL1070 FS","10MBL1070",195,232,196,233,45,54,45,54,55,,"CCGT D1_Integrated Programme Schedule;M&E;Construction;M&E Construction;Gas Turbine (MB);(10MBL) Air Intake System",1,1,0.0000018632,0.002034588,0.0042726348,7,0.8,0.0001070254,0.0068493151,0.0030769231,0.0028125,0.0052219321,0.0135135135,0.0156950673,0.8,0.0105660321
1.3.1.1.19.17-13,10MBL1120,"Set Exhaust Manifold",7112,"CCGTD1_IPS",TT_Task,"58348",-,-,-,100,TK_Complete,26/10/2018,05/09/2018,31/10/2018,27/09/2018,"","","","",169,198,170,201,39,46,39,47,38,,"CCGT D1_Integrated Programme Schedule;M&E;Construction;M&E Construction;Gas Turbine (MB);(10MBL) Air Intake System",0,0,0.0,0.0,0.0,5,0.0,0.0000812387,0.0,0.0,0.0,0.0,0.0,0.0112107623,0.0,0.0
1.3.1.1.19.17-14,10MBL1130,"Complete Steel Work for Inlet Air System",7112,"CCGTD1_IPS",TT_Task,"58348",-,-,-,100,TK_Complete,01/04/2019,01/03/2019,27/04/2019,06/05/2019,"KD_C17 FS","KD_C17","10MBL1100 FS,10MBL1000 FF","10MBL1100,10MBL1000",191,224,195,233,44,52,45,54,50,,"CCGT D1_Integrated Programme Schedule;M&E;Construction;M&E Construction;Gas Turbine (MB);(10MBL) Air Intake System",1,2,0.0000001242,0.017293998,0.0002034588,26,0.0,0.0000838908,0.0068493151,0.0061538462,0.0001875,0.044386423,0.0006435006,0.0582959641,0.0,0.001086668
1.3.1.1.20,58340,"Condensate System",7112,"CCGTD1_IPS",WBS,"58325",,,,100,Complete,18/04/2018,16/04/2018,29/10/2019,09/12/2019,,,,,142,178,221,264,33,41,51,61,,,"CCGT D1_Integrated Programme Schedule;M&E;Construction;M&E Construction"
1.3.1.1.20.1,58342,"Condensate System (LD/LC)",7112,"CCGTD1_IPS",WBS,"58340",,,,100,Complete,02/01/2019,07/01/2019,04/10/2019,09/12/2019,,,,,179,216,218,264,41,50,50,61,,,"CCGT D1_Integrated Programme Schedule;M&E;Construction;M&E Construction;Condensate System"
1.3.1.1.20.1.1,58346,"(10LDK) Condensate Polishing System",7112,"CCGTD1_IPS",WBS,"58342",,,,100,Complete,16/02/2019,25/03/2019,04/10/2019,26/11/2019,,,,,185,227,218,262,43,53,50,61,,,"CCGT D1_Integrated Programme Schedule;M&E;Construction;M&E Construction;Condensate System;Condensate System (LD/LC)"
1.3.1.1.20.1.1-1,10LDK-20,"Install Large Bore Pipe/Valves/Supports",7112,"CCGTD1_IPS",TT_Task,"58346",-,-,-,100,TK_Complete,15/04/2019,15/04/2019,31/05/2019,22/07/2019,"SI---P4I40 FS,SI1LDK4B40 FS,10LAB20 SS,SI1--P4A40 FS,10LDK-10 FS,SI1--P4H40 FS","SI---P4I40,SI1LDK4B40,10LAB20,SI1--P4A40,10LDK-10,SI1--P4H40","10LDK-30 FS,10LDK-40 SS,10LDK-50 FS","10LDK-30,10LDK-40,10LDK-50",193,230,200,244,45,53,46,57,54,,"CCGT D1_Integrated Programme Schedule;M&E;Construction;M&E Construction;Condensate System;Condensate System (LD/LC);(10LDK) Condensate Polishing System",6,3,0.0000077218,0.0036622584,0.0044760936,46,0.0,0.0003317152,0.0410958904,0.0092307692,0.01165625,0.0093994778,0.0141570142,0.1031390135,0.0,0.1026322448
1.3.1.1.20.1.1-2,10LDK-50,"EC+I",7112,"CCGTD1_IPS",TT_Task,"58346",-,-,-,100,TK_Complete,21/06/2019,14/06/2019,02/08/2019,21/09/2019,"SI-CP-4-40 FS,EDS.1090 FS,SI-BZK4-25 FS,SI-BZK4-58 FS,10LDK-30 FS,SI-C--4B40 FS,SI-C-4C40 FS,10LDK-20 FS","SI-CP-4-40,EDS.1090,SI-BZK4-25,SI-BZK4-58,10LDK-30,SI-C--4B40,SI-C-4C40,10LDK-20","10LDK-90 FS","10LDK-90",203,239,209,253,47,55,48,59,64,,"CCGT D1_Integrated Programme Schedule;M&E;Construction;M&E Construction;Condensate System;Condensate System (LD/LC);(10LDK) Condensate Polishing System",8,1,0.0000045906,0.0024415056,0.006103764,42,0.0,0.0002809118,0.0547945205,0.0030769231,0.0069295635,0.0062663185,0.0193050193,0.0941704036,0.0,0.0818156577
1.3.1.1.20.1.1-3,10LDK-70,"Hydro Test",7112,"CCGTD1_IPS",TT_Task,"58346",-,-,-,100,TK_Complete,30/09/2019,25/10/2019,04/10/2019,04/11/2019,"10LDK-60 FS","10LDK-60","10LDK-80 FS","10LDK-80",217,258,218,259,50,60,50,60,77,,"CCGT D1_Integrated Programme Schedule;M&E;Construction;M&E Construction;Condensate System;Condensate System (LD/LC);(10LDK) Condensate Polishing System",1,1,0.0000020702,0.0026449644,0.0052899288,4,0.4,0.0003317333,0.0068493151,0.0030769231,0.003125,0.0067885117,0.0167310167,0.0089686099,0.4,0.1026396765
1.3.1.1.20.1.1-4,10LDK-80,"Painting/Insulation",7112,"CCGTD1_IPS",TT_Task,"58346",-,-,-,100,TK_Complete,18/07/2019,20/07/2019,05/08/2019,26/11/2019,"10LDK-70 FS","10LDK-70","10LDK-90 FS","10LDK-90",207,244,209,262,48,56,48,61,66,,"CCGT D1_Integrated Programme Schedule;M&E;Construction;M&E Construction;Condensate System;Condensate System (LD/LC);(10LDK) Condensate Polishing System",1,1,0.0000014905,0.0024415056,0.0054933876,18,0.0,0.0003637848,0.0068493151,0.0030769231,0.00225,0.0062663185,0.0173745174,0.0403587444,0.0,0.1157727324
1.3.1.1.20.1.1-5,10LDK-10,"Install Equipment/Skids/Pumps",7112,"CCGTD1_IPS",TT_Task,"58346",-,-,-,100,TK_Complete,16/02/2019,25/03/2019,04/03/2019,15/04/2019,"KD_D06 FS,KD_C17 FS,KD_C27 FS","KD_D06,KD_C17,KD_C27","10LDK-20 FS","10LDK-20",185,227,187,230,43,53,43,53,47,,"CCGT D1_Integrated Programme Schedule;M&E;Construction;M&E Construction;Condensate System;Condensate System (LD/LC);(10LDK) Condensate Polishing System",3,1,0.0000011179,0.0038657172,0.0008138352,16,0.6,0.0000908802,0.0205479452,0.0030769231,0.0016875,0.009921671,0.0025740026,0.0358744395,0.6,0.0039505747
1.3.1.1.20.1.1-6,10LDK-30,"Install Small Bore Pipe/Valves/Supports",7112,"CCGTD1_IPS",TT_Task,"58346",-,-,-,100,TK_Complete,29/05/2019,14/05/2019,28/06/2019,22/07/2019,"10LDK-20 FS,SI1--P4H40 FS,SI1--P4A40 FS","10LDK-20,SI1--P4H40,SI1--P4A40","10LDK-60 FS,10LDK-40 FF,10LDK-50 FS","10LDK-60,10LDK-40,10LDK-50",200,234,204,244,46,54,47,57,60,,"CCGT D1_Integrated Programme Schedule;M&E;Construction;M&E Construction;Condensate System;Condensate System (LD/LC);(10LDK) Condensate Polishing System",3,3,0.0000018011,0.0034587996,0.0046795524,30,0.0,0.0001605015,0.0205479452,0.0092307692,0.00271875,0.0088772846,0.0148005148,0.067264574,0.0,0.032477782
1.3.1.1.20.1.1-7,10LDK-40,"NDE",7112,"CCGTD1_IPS",TT_Task,"58346",-,-,-,100,TK_Complete,30/05/2019,16/05/2019,06/07/2019,21/09/2019,"10LDK-20 SS,10LDK-30 FF","10LDK-20,10LDK-30","10LDK-60 FS","10LDK-60",200,234,205,253,46,54,47,59,60,,"CCGT D1_Integrated Programme Schedule;M&E;Construction;M&E Construction;Condensate System;Condensate System (LD/LC);(10LDK) Condensate Polishing System",2,1,0.0000012421,0.003051882,0.0048830112,37,0.0,0.0002352359,0.0136986301,0.0030769231,0.001875,0.0078328982,0.0154440154,0.0829596413,0.0,0.0631000344
1.3.1.1.20.1.1-8,10LDK-60,"Line Inspection",7112,"CCGTD1_IPS",TT_Task,"58346",-,-,-,100,TK_Complete,05/08/2019,24/08/2019,13/08/2019,12/09/2019,"10LDK-30 FS,10LDK-40 FS","10LDK-30,10LDK-40","10LDK-70 FS","10LDK-70",209,249,210,251,48,58,49,58,69,,"CCGT D1_Integrated Programme Schedule;M&E;Construction;M&E Construction;Condensate System;Condensate System (LD/LC);(10LDK) Condensate Polishing System",2,1,0.000002567,0.0028484232,0.00508647,8,0.0,0.0002941398,0.0136986301,0.0030769231,0.003875,0.007310705,0.0160875161,0.0179372197,0.0,0.0872357956
1.3.1.1.20.1.1-9,10LDK-90,"Pre-Commissioning/Flushing/Cleaning",7112,"CCGTD1_IPS",TT_Task,"58346",-,-,-,100,TK_Complete,21/09/2019,14/09/2019,30/09/2019,26/11/2019,"10LDK-50 FS,10LDK-80 FS","10LDK-50,10LDK-80","TOP1710 FS","TOP1710",216,252,217,262,50,58,50,61,77,,"CCGT D1_Integrated Programme Schedule;M&E;Construction;M&E Construction;Condensate System;Condensate System (LD/LC);(10LDK) Condensate Polishing System",2,1,0.0000056257,0.0022380468,0.007121058,9,0.0,0.0006303854,0.0136986301,0.0030769231,0.0084920635,0.0057441253,0.0225225225,0.0201793722,0.0,0.2250118128
1.3.1.1.20.1.2,58345,"(10LD) Condensate Polishing Plant",7112,"CCGTD1_IPS",WBS,"58342",,,,100,Complete,16/02/2019,25/03/2019,04/10/2019,09/12/2019,,,,,185,227,218,264,43,53,50,61,,,"CCGT D1_Integrated Programme Schedule;M&E;Construction;M&E Construction;Condensate System;Condensate System (LD/LC)"
1.3.1.1.20.1.2-1,10LD-20,"Install Large Bore Pipe/Valves/Supports",7112,"CCGTD1_IPS",TT_Task,"58345",-,-,-,100,TK_Complete,16/04/2019,16/04/2019,06/06/2019,24/07/2019,"10LD-10 FS","10LD-10","10LD-50 FS,10LD-40 SS,10LD-70 FS,10LD-30 FS","10LD-50,10LD-40,10LD-70,10LD-30",193,230,201,244,45,53,46,57,54,,"CCGT D1_Integrated Programme Schedule;M&E;Construction;M&E Construction;Condensate System;Condensate System (LD/LC);(10LD) Condensate Polishing Plant",1,4,0.000002153,0.0036622584,0.0008138352,51,0.0,0.0002243215,0.0068493151,0.0123076923,0.00325,0.0093994778,0.0025740026,0.1143497758,0.0,0.0586278814
1.3.1.1.20.1.2-2,10LD-70,"Hydro Test",7112,"CCGTD1_IPS",TT_Task,"58345",-,-,-,100,TK_Complete,30/09/2019,19/10/2019,04/10/2019,19/10/2019,"10LD-20 FS,10LD-60 FS","10LD-20,10LD-60","10LD-90 FS","10LD-90",217,257,218,257,50,60,50,60,77,,"CCGT D1_Integrated Programme Schedule;M&E;Construction;M&E Construction;Condensate System;Condensate System (LD/LC);(10LD) Condensate Polishing Plant",2,1,0.0000018218,0.0024415056,0.0016276704,4,1.0,0.0003170922,0.0136986301,0.0030769231,0.00275,0.0062663185,0.0051480051,0.0089686099,1.0,0.0966405336
1.3.1.1.20.1.2-3,10LD-50,"EC+I",7112,"CCGTD1_IPS",TT_Task,"58345",-,-,-,100,TK_Complete,03/07/2019,30/04/2019,25/07/2019,21/09/2019,"10LD-20 FS,10LD-30 FS","10LD-20,10LD-30","10LD-90 FF","10LD-90",205,232,208,253,47,54,48,59,65,,"CCGT D1_Integrated Programme Schedule;M&E;Construction;M&E Construction;Condensate System;Condensate System (LD/LC);(10LD) Condensate Polishing Plant",2,1,0.0000010765,0.0024415056,0.0012207528,22,0.0,0.000146602,0.0136986301,0.0030769231,0.001625,0.0062663185,0.0038610039,0.0493273543,0.0,0.0267824731
1.3.1.1.20.1.2-4,10LD-80,"Painting/Insulation",7112,"CCGTD1_IPS",TT_Task,"58345",-,-,-,100,TK_Complete,10/07/2019,20/07/2019,07/08/2019,09/12/2019,"10LD-30 FS","10LD-30","10LD-90 FF","10LD-90",206,244,210,264,48,56,49,61,66,,"CCGT D1_Integrated Programme Schedule;M&E;Construction;M&E Construction;Condensate System;Condensate System (LD/LC);(10LD) Condensate Polishing Plant",1,1,0.0000002484,0.0024415056,0.0012207528,28,0.0,0.0001191099,0.0068493151,0.0030769231,0.000375,0.0062663185,0.0038610039,0.0627802691,0.0,0.0155176521
1.3.1.1.20.1.2-5,10LD-10,"Install Equipment/Skids/Pumps",7112,"CCGTD1_IPS",TT_Task,"58345",-,-,-,100,TK_Complete,16/02/2019,25/03/2019,22/03/2019,30/04/2019,"KD_C03 FS,KD_C17 FS,KD_C27 FS","KD_C03,KD_C17,KD_C27","10LD-20 FS","10LD-20",185,227,190,232,43,53,44,54,47,,"CCGT D1_Integrated Programme Schedule;M&E;Construction;M&E Construction;Condensate System;Condensate System (LD/LC);(10LD) Condensate Polishing Plant",3,1,0.0000015319,0.0038657172,0.0006103764,34,0.6,0.0001681143,0.0205479452,0.0030769231,0.0023125,0.009921671,0.0019305019,0.0762331839,0.6,0.0355971151
1.3.1.1.20.1.2-6,10LD-30,"Install Small Bore Pipe/Valves/Supports",7112,"CCGTD1_IPS",TT_Task,"58345",-,-,-,100,TK_Complete,15/05/2019,26/04/2019,29/06/2019,24/07/2019,"10LD-20 FS","10LD-20","10LD-50 FS,10LD-40 FF,10LD-80 FS","10LD-50,10LD-40,10LD-80",198,232,204,244,46,54,47,57,58,,"CCGT D1_Integrated Programme Schedule;M&E;Construction;M&E Construction;Condensate System;Condensate System (LD/LC);(10LD) Condensate Polishing Plant",1,3,0.000000207,0.0034587996,0.001017294,45,0.0,0.0001540719,0.0068493151,0.0092307692,0.0003125,0.0088772846,0.0032175032,0.100896861,0.0,0.0298432475
1.3.1.1.20.1.2-7,10LD-40,"NDE",7112,"CCGTD1_IPS",TT_Task,"58345",-,-,-,100,TK_Complete,10/05/2019,10/05/2019,26/06/2019,21/09/2019,"10LD-20 SS,10LD-30 FF","10LD-20,10LD-30","10LD-60 FS","10LD-60",197,234,204,253,46,54,47,59,58,,"CCGT D1_Integrated Programme Schedule;M&E;Construction;M&E Construction;Condensate System;Condensate System (LD/LC);(10LD) Condensate Polishing Plant",2,1,0.0000002898,0.0028484232,0.0012207528,47,0.0,0.0002208784,0.0136986301,0.0030769231,0.0004375,0.007310705,0.0038610039,0.1053811659,0.0,0.0572171015
1.3.1.1.20.1.2-8,10LD-60,"Line Inspection",7112,"CCGTD1_IPS",TT_Task,"58345",-,-,-,100,TK_Complete,14/08/2019,24/08/2019,22/08/2019,14/09/2019,"10LD-40 FS","10LD-40","10LD-70 FS","10LD-70",211,249,212,252,49,58,49,58,69,,"CCGT D1_Integrated Programme Schedule;M&E;Construction;M&E Construction;Condensate System;Condensate System (LD/LC);(10LD) Condensate Polishing Plant",1,1,0.0000005797,0.0026449644,0.0014242116,8,0.0,0.0002693356,0.0068493151,0.0030769231,0.000875,0.0067885117,0.0045045045,0.0179372197,0.0,0.0770723533
1.3.1.1.20.1.2-9,10LD-90,"Pre-Commissioning/Flushing/Cleaning",7112,"CCGTD1_IPS",TT_Task,"58345",-,-,-,100,TK_Complete,12/09/2019,12/09/2019,21/09/2019,09/12/2019,"10LD-50 FF,10LD-80 FF,10LD-70 FS","10LD-50,10LD-80,10LD-70","TOP1700 FS","TOP1700",215,251,216,264,50,58,50,61,76,,"CCGT D1_Integrated Programme Schedule;M&E;Construction;M&E Construction;Condensate System;Condensate System (LD/LC);(10LD) Condensate Polishing Plant",3,1,0.0000041818,0.0022380468,0.0022380468,9,0.0,0.0005775186,0.0205479452,0.0030769231,0.0063125,0.0057441253,0.0070785071,0.0201793722,0.0,0.2033497436
1.3.1.1.20.1.3,58344,"(10LCA-02) Condensate Supply System incl. Preheater 10HAA10",7112,"CCGTD1_IPS",WBS,"58342",,,,100,Complete,22/03/2019,07/01/2019,20/09/2019,11/11/2019,,,,,190,216,216,260,44,50,50,60,,,"CCGT D1_Integrated Programme Schedule;M&E;Construction;M&E Construction;Condensate System;Condensate System (LD/LC)"
1.3.1.1.20.1.3-1,10LCA-02-20,"Install Large Bore Pipe/Valves/Supports",7112,"CCGTD1_IPS",TT_Task,"58344",-,-,-,100,TK_Complete,22/03/2019,07/01/2019,29/06/2019,24/07/2019,"SI---P4I40 FS,10LCA-02-10 FS,10LBB20 SS,A2380 FS","SI---P4I40,10LCA-02-10,10LBB20,A2380","10LCA-02-30 FS,10LCA-02-50 FS,10LCA-02-80 SS","10LCA-02-30,10LCA-02-50,10LCA-02-80",190,216,204,244,44,50,47,57,48,,"CCGT D1_Integrated Programme Schedule;M&E;Construction;M&E Construction;Condensate System;Condensate System (LD/LC);(10LCA-02) Condensate Supply System incl. Preheater 10HAA10",4,3,0.0000231034,0.0036622584,0.0134282808,99,0.0,0.0003940882,0.0273972603,0.0092307692,0.034875,0.0093994778,0.0424710425,0.2219730942,0.0,0.128189483
1.3.1.1.20.1.3-2,10LCA-02-80,"Painting/Insulation",7112,"CCGTD1_IPS",TT_Task,"58344",-,-,-,100,TK_Complete,31/05/2019,18/06/2019,29/06/2019,11/11/2019,"10LCA-02-20 SS","10LCA-02-20","10LCA-02-90 FF","10LCA-02-90",200,239,204,260,46,55,47,60,60,,"CCGT D1_Integrated Programme Schedule;M&E;Construction;M&E Construction;Condensate System;Condensate System (LD/LC);(10LCA-02) Condensate Supply System incl. Preheater 10HAA10",1,1,0.0000036021,0.0024415056,0.0136317396,29,0.0,0.0002333056,0.0068493151,0.0030769231,0.0054375,0.0062663185,0.0431145431,0.0650224215,0.0,0.0623091242
1.3.1.1.20.1.3-3,10LCA-02-50,"EC+I",7112,"CCGTD1_IPS",TT_Task,"58344",-,-,-,100,TK_Complete,27/05/2019,26/04/2019,06/06/2019,21/09/2019,"10LCA-02-20 FS","10LCA-02-20","10LCA-02-90 FS","10LCA-02-90",199,232,201,253,46,54,46,59,60,,"CCGT D1_Integrated Programme Schedule;M&E;Construction;M&E Construction;Condensate System;Condensate System (LD/LC);(10LCA-02) Condensate Supply System incl. Preheater 10HAA10",1,1,0.0000036021,0.0024415056,0.0136317396,10,0.0,0.0001336756,0.0068493151,0.0030769231,0.0054375,0.0062663185,0.0431145431,0.0224215247,0.0,0.0214859049
1.3.1.1.20.1.3-4,10LCA-02-10,"Install Equipment/Skids/Pumps",7112,"CCGTD1_IPS",TT_Task,"58344",-,-,-,100,TK_Complete,01/04/2019,02/04/2019,08/05/2019,10/06/2019,"KD_D06 FS,KD_B05 FS,SI1LCA4B25 FS,SI1LCB4B40 FS,SUB-BOP-160 FS,KD_E03 FS,KD_E04 FS,KD_E05 FS,A1010 FS","KD_D06,KD_B05,SI1LCA4B25,SI1LCB4B40,SUB-BOP-160,KD_E03,KD_E04,KD_E05,A1010","10LCA-02-20 FS","10LCA-02-20",191,228,197,238,44,53,45,55,50,,"CCGT D1_Integrated Programme Schedule;M&E;Construction;M&E Construction;Condensate System;Condensate System (LD/LC);(10LCA-02) Condensate Supply System incl. Preheater 10HAA10",9,1,0.0000224409,0.0038657172,0.0120040692,37,0.0,0.0003087272,0.0616438356,0.0030769231,0.033875,0.009921671,0.037966538,0.0829596413,0.0,0.0932129659
1.3.1.1.20.1.3-5,10LCA-02-30,"Install Small Bore Pipe/Valves/Supports",7112,"CCGTD1_IPS",TT_Task,"58344",-,-,-,100,TK_Complete,21/06/2019,07/05/2019,16/07/2019,25/07/2019,"10LCA-02-20 FS","10LCA-02-20","10LCA-02-40 FF","10LCA-02-40",203,233,206,244,47,54,48,57,64,,"CCGT D1_Integrated Programme Schedule;M&E;Construction;M&E Construction;Condensate System;Condensate System (LD/LC);(10LCA-02) Condensate Supply System incl. Preheater 10HAA10",1,1,0.0000083222,0.003051882,0.0136317396,25,0.0,0.0002123309,0.0068493151,0.0030769231,0.0125625,0.0078328982,0.0431145431,0.0560538117,0.0,0.0537147623
1.3.1.1.20.1.3-6,10LCA-02-40,"NDE",7112,"CCGTD1_IPS",TT_Task,"58344",-,-,-,100,TK_Complete,08/07/2019,13/05/2019,16/07/2019,21/09/2019,"10LCA-02-30 FF","10LCA-02-30","10LCA-02-60 FF","10LCA-02-60",205,234,206,253,48,54,48,59,65,,"CCGT D1_Integrated Programme Schedule;M&E;Construction;M&E Construction;Condensate System;Condensate System (LD/LC);(10LCA-02) Condensate Supply System incl. Preheater 10HAA10",1,1,0.0000061278,0.0028484232,0.0138351984,8,0.0,0.0002621043,0.0068493151,0.0030769231,0.00925,0.007310705,0.0437580438,0.0179372197,0.0,0.0741093449
1.3.1.1.20.1.3-7,10LCA-02-60,"Line Inspection",7112,"CCGTD1_IPS",TT_Task,"58344",-,-,-,100,TK_Complete,31/07/2019,05/07/2019,10/08/2019,10/08/2019,"10LCA-02-40 FF","10LCA-02-40","10LCA-02-70 FS","10LCA-02-70",209,242,210,247,48,56,49,57,67,,"CCGT D1_Integrated Programme Schedule;M&E;Construction;M&E Construction;Condensate System;Condensate System (LD/LC);(10LCA-02) Condensate Supply System incl. Preheater 10HAA10",1,1,0.0000038506,0.0026449644,0.0140386572,10,0.0,0.0003044862,0.0068493151,0.0030769231,0.0058125,0.0067885117,0.0444015444,0.0224215247,0.0,0.0914752283
1.3.1.1.20.1.3-8,10LCA-02-70,"Hydro Test",7112,"CCGTD1_IPS",TT_Task,"58344",-,-,-,100,TK_Complete,12/08/2019,15/08/2019,22/08/2019,17/08/2019,"10LCA-02-60 FS","10LCA-02-60","10LCA-02-90 FS","10LCA-02-90",210,247,212,248,49,57,49,57,69,,"CCGT D1_Integrated Programme Schedule;M&E;Construction;M&E Construction;Condensate System;Condensate System (LD/LC);(10LCA-02) Condensate Supply System incl. Preheater 10HAA10",1,1,0.0000014905,0.0024415056,0.014242116,10,1.0,0.0003404935,0.0068493151,0.0030769231,0.00225,0.0062663185,0.045045045,0.0224215247,1.0,0.1062291369
1.3.1.1.20.1.3-9,10LCA-02-90,"Pre-Commissioning/Flushing/Cleaning",7112,"CCGTD1_IPS",TT_Task,"58344",-,-,-,100,TK_Complete,07/09/2019,07/09/2019,20/09/2019,11/11/2019,"10LCA-02-80 FF,10LCA-02-70 FS,10LCA-02-50 FS","10LCA-02-80,10LCA-02-70,10LCA-02-50","TOP1920 FS","TOP1920",214,251,216,260,50,58,50,60,76,,"CCGT D1_Integrated Programme Schedule;M&E;Construction;M&E Construction;Condensate System;Condensate System (LD/LC);(10LCA-02) Condensate Supply System incl. Preheater 10HAA10",3,1,0.0000071629,0.0022380468,0.0148524924,13,0.0,0.0006837808,0.0205479452,0.0030769231,0.0108125,0.0057441253,0.046975547,0.0291479821,0.0,0.2468904755
1.3.1.1.20.1.4,58343,"(10LCA) Main Condensate Pumps and Supply System for Min. Flow Operation Incl.",7112,"CCGTD1_IPS",WBS,"58342",,,,100,Complete,02/01/2019,10/01/2019,11/09/2019,05/12/2019,,,,,179,216,215,263,41,50,50,61,,,"CCGT D1_Integrated Programme Schedule;M&E;Construction;M&E Construction;Condensate System;Condensate System (LD/LC)"
1.3.1.1.20.1.4-1,10LCA20,"Install Condensate Recirculation Pump Skid (LCA50Y Module)",7112,"CCGTD1_IPS",TT_Task,"58343",-,-,-,100,TK_Complete,28/02/2019,27/02/2019,13/03/2019,28/02/2019,"","","10LCA60 FS","10LCA60",187,223,189,223,43,52,44,52,48,,"CCGT D1_Integrated Programme Schedule;M&E;Construction;M&E Construction;Condensate System;Condensate System (LD/LC);(10LCA) Main Condensate Pumps and Supply System for Min. Flow Operation Incl.",0,1,0.0,0.003051882,0.0,13,1.0,0.0000812387,0.0,0.0030769231,0.0,0.0078328982,0.0,0.0291479821,1.0,0.0
1.3.1.1.20.1.4-2,10LCA60,"E &IC Erection Cond Recirc Pump",7112,"CCGTD1_IPS",TT_Task,"58343",-,-,-,100,TK_Complete,01/04/2019,15/04/2019,17/05/2019,07/09/2019,"10LCA20 FS","10LCA20","10LCA100 FF","10LCA100",191,230,198,251,44,53,46,58,50,,"CCGT D1_Integrated Programme Schedule;M&E;Construction;M&E Construction;Condensate System;Condensate System (LD/LC);(10LCA) Main Condensate Pumps and Supply System for Min. Flow Operation Incl.",1,1,0.0000005797,0.0028484232,0.0002034588,46,0.0,0.0001503957,0.0068493151,0.0030769231,0.000875,0.007310705,0.0006435006,0.1031390135,0.0,0.0283369572
1.3.1.1.20.1.4-3,10LCA10,"Installation of Condensate Extraction Pump - Skid",7112,"CCGTD1_IPS",TT_Task,"58343",-,-,-,100,TK_Complete,02/01/2019,10/01/2019,12/01/2019,06/05/2019,"SI1LCB4B40 FS,KD_B05 FS,KD_C17 FS,KD_H01 FS","SI1LCB4B40,KD_B05,KD_C17,KD_H01","10LCA30 FS","10LCA30",179,216,180,233,41,50,42,54,43,,"CCGT D1_Integrated Programme Schedule;M&E;Construction;M&E Construction;Condensate System;Condensate System (LD/LC);(10LCA) Main Condensate Pumps and Supply System for Min. Flow Operation Incl.",4,1,0.0000021116,0.004069176,0.001017294,10,0.0,0.0001189669,0.0273972603,0.0030769231,0.0031875,0.0104438642,0.0032175032,0.0224215247,0.0,0.0154590665
1.3.1.1.20.1.4-4,10LCA30,"Install Large Bore Pipe/Valves/Supports",7112,"CCGTD1_IPS",TT_Task,"58343",-,-,-,100,TK_Complete,12/01/2019,12/01/2019,03/04/2019,17/07/2019,"SI---P4I40 FS,10LCA10 FS,SI1--P4A40 FS,SI1--P4H40 FS,A2380 FS","SI---P4I40,10LCA10,SI1--P4A40,SI1--P4H40,A2380","10LCA50 FS,10LCA40 FS,10LCA90 FS","10LCA50,10LCA40,10LCA90",180,217,192,243,42,50,44,56,43,,"CCGT D1_Integrated Programme Schedule;M&E;Construction;M&E Construction;Condensate System;Condensate System (LD/LC);(10LCA) Main Condensate Pumps and Supply System for Min. Flow Operation Incl.",5,3,0.0000057758,0.0038657172,0.0028484232,81,0.0,0.0002049343,0.0342465753,0.0092307692,0.00871875,0.009921671,0.009009009,0.1816143498,0.0,0.050684037
1.3.1.1.20.1.4-5,10LCA90,"Painting/Insulation",7112,"CCGTD1_IPS",TT_Task,"58343",-,-,-,100,TK_Complete,19/06/2019,07/06/2019,08/07/2019,05/12/2019,"10LCA30 FS","10LCA30","10LCA100 FF","10LCA100",203,238,205,263,47,55,48,61,63,,"CCGT D1_Integrated Programme Schedule;M&E;Construction;M&E Construction;Condensate System;Condensate System (LD/LC);(10LCA) Main Condensate Pumps and Supply System for Min. Flow Operation Incl.",1,1,0.0000037678,0.0028484232,0.003051882,19,0.0,0.0001176635,0.0068493151,0.0030769231,0.0056875,0.007310705,0.0096525097,0.0426008969,0.0,0.0149249763
1.3.1.1.20.1.4-6,10LCA40,"Install Small Bore Pipe/Valves/Supports",7112,"CCGTD1_IPS",TT_Task,"58343",-,-,-,100,TK_Complete,30/04/2019,06/05/2019,05/06/2019,17/08/2019,"SI1--P4H40 FS,10LCA30 FS,SI1--P4A40 FS","SI1--P4H40,10LCA30,SI1--P4A40","10LCA50 FS","10LCA50",195,233,201,248,45,54,46,57,56,,"CCGT D1_Integrated Programme Schedule;M&E;Construction;M&E Construction;Condensate System;Condensate System (LD/LC);(10LCA) Main Condensate Pumps and Supply System for Min. Flow Operation Incl.",3,1,0.0000001863,0.0034587996,0.003051882,36,0.0,0.0001520931,0.0205479452,0.0030769231,0.00028125,0.0088772846,0.0096525097,0.0807174888,0.0,0.0290324615
1.3.1.1.20.1.4-7,10LCA50,"NDE",7112,"CCGTD1_IPS",TT_Task,"58343",-,-,-,100,TK_Complete,30/04/2019,08/04/2019,05/06/2019,21/09/2019,"10LCA30 FS,10LCA40 FS","10LCA30,10LCA40","10LCA70 FS","10LCA70",195,229,201,253,45,53,46,59,56,,"CCGT D1_Integrated Programme Schedule;M&E;Construction;M&E Construction;Condensate System;Condensate System (LD/LC);(10LCA) Main Condensate Pumps and Supply System for Min. Flow Operation Incl.",2,1,0.0000019046,0.0032553408,0.0032553408,36,0.0,0.000279755,0.0136986301,0.0030769231,0.002875,0.0083550914,0.0102960103,0.0807174888,0.0,0.0813416776
1.3.1.1.20.1.4-8,10LCA70,"Line Inspection",7112,"CCGTD1_IPS",TT_Task,"58343",-,-,-,100,TK_Complete,03/08/2019,05/08/2019,13/08/2019,10/08/2019,"10LCA50 FS","10LCA50","10LCA80 FS","10LCA80",209,246,210,247,48,57,49,57,68,,"CCGT D1_Integrated Programme Schedule;M&E;Construction;M&E Construction;Condensate System;Condensate System (LD/LC);(10LCA) Main Condensate Pumps and Supply System for Min. Flow Operation Incl.",1,1,0.0000018632,0.003051882,0.0034587996,10,1.0,0.0003194641,0.0068493151,0.0030769231,0.0028125,0.0078328982,0.0109395109,0.0224215247,1.0,0.0976123802
1.3.1.1.20.1.4-9,10LCA80,"Hydro Test",7112,"CCGTD1_IPS",TT_Task,"58343",-,-,-,100,TK_Complete,13/08/2019,17/08/2019,23/08/2019,17/08/2019,"10LCA70 FS","10LCA70","10LCA100 FS","10LCA100",210,248,212,248,49,57,49,57,69,,"CCGT D1_Integrated Programme Schedule;M&E;Construction;M&E Construction;Condensate System;Condensate System (LD/LC);(10LCA) Main Condensate Pumps and Supply System for Min. Flow Operation Incl.",1,1,0.000001739,0.0028484232,0.0036622584,10,1.0,0.000353336,0.0068493151,0.0030769231,0.002625,0.007310705,0.0115830116,0.0224215247,1.0,0.1114913309
1.3.1.1.20.1.4-10,10LCA100,"Pre-Commissioning/Flushing/Cleaning",7112,"CCGTD1_IPS",TT_Task,"58343",-,-,-,100,TK_Complete,31/08/2019,07/09/2019,11/09/2019,05/12/2019,"10LCA80 FS,10LCA90 FF,10LCA60 FF","10LCA80,10LCA90,10LCA60","TOP1410 FS","TOP1410",213,251,215,263,49,58,50,61,70,,"CCGT D1_Integrated Programme Schedule;M&E;Construction;M&E Construction;Condensate System;Condensate System (LD/LC);(10LCA) Main Condensate Pumps and Supply System for Min. Flow Operation Incl.",3,1,0.0000069145,0.0026449644,0.0044760936,11,0.0,0.0006103681,0.0205479452,0.0030769231,0.0104375,0.0067885117,0.0141570142,0.0246636771,0.0,0.2168097534
1.3.1.1.20.2,58341,"(10MAG) Condensing System",7112,"CCGTD1_IPS",WBS,"58340",,,,100,Complete,18/04/2018,16/04/2018,29/10/2019,14/11/2019,,,,,142,178,221,260,33,41,51,60,,,"CCGT D1_Integrated Programme Schedule;M&E;Construction;M&E Construction;Condensate System"
1.3.1.1.20.2-1,A2590,"Piping Installation MAG",7112,"CCGTD1_IPS",TT_Task,"58341",-,-,-,100,TK_Complete,04/05/2019,04/05/2019,08/06/2019,14/09/2019,"A1820 FS,A1710 FS,A1750 FS","A1820,A1710,A1750","A1870 FS,10PUR10 SS","A1870,10PUR10",196,233,201,252,45,54,47,58,57,,"CCGT D1_Integrated Programme Schedule;M&E;Construction;M&E Construction;Condensate System;(10MAG) Condensing System",3,2,0.0000312392,0.0046795524,0.013224822,35,0.0,0.0003046158,0.0205479452,0.0061538462,0.04715625,0.0120104439,0.0418275418,0.0784753363,0.0,0.091528337
1.3.1.1.20.2-2,A1620,"Set up and Check Condenser Foundations",7112,"CCGTD1_IPS",TT_Task,"58341",-,-,-,100,TK_Complete,18/04/2018,16/04/2018,21/04/2018,18/04/2018,"SI1MAG4-40 FS,SUB-CON-180 FS","SI1MAG4-40,SUB-CON-180","A3330 SS,S1040 SS","A3330,S1040",142,178,142,178,33,41,33,41,24,,"CCGT D1_Integrated Programme Schedule;M&E;Construction;M&E Construction;Condensate System;(10MAG) Condensing System",2,0,0.0,0.0,0.0028484232,3,1.0,0.0001918899,0.0136986301,0.0,0.0,0.0,0.009009009,0.0067264574,1.0,0.0453391315
1.3.1.1.20.2-3,A1630,"Placing and Alignment of Support Plates",7112,"CCGTD1_IPS",TT_Task,"58341",-,-,-,100,TK_Complete,02/04/2019,02/04/2019,04/04/2019,04/04/2019,"SI1MAG4-40 FS,A3350 FS,10MAC-1270 FS","SI1MAG4-40,A3350,10MAC-1270","A1640 FS,A1740 FS","A1640,A1740",191,228,192,228,44,53,44,53,52,,"CCGT D1_Integrated Programme Schedule;M&E;Construction;M&E Construction;Condensate System;(10MAG) Condensing System",3,2,0.0000399962,0.0113936928,0.0120040692,2,1.0,0.0001934268,0.0205479452,0.0061538462,0.060375,0.0292428198,0.037966538,0.0044843049,1.0,0.0459688417
1.3.1.1.20.2-4,A1640,"Fitting and Welding of Fixing and Guide Points",7112,"CCGTD1_IPS",TT_Task,"58341",-,-,-,100,TK_Complete,07/05/2018,28/04/2018,09/05/2018,04/05/2018,"A1630 FS","A1630","A1650 FS","A1650",144,180,145,181,33,42,33,42,27,,"CCGT D1_Integrated Programme Schedule;M&E;Construction;M&E Construction;Condensate System;(10MAG) Condensing System",1,1,0.0000312599,0.0097660224,0.012207528,2,0.8,0.0001282736,0.0068493151,0.0030769231,0.0471875,0.0250652742,0.0386100386,0.0044843049,0.8,0.0192724496
1.3.1.1.20.2-5,A1650,"Placing Hotwell",7112,"CCGTD1_IPS",TT_Task,"58341",-,-,-,100,TK_Complete,07/05/2018,05/05/2018,07/05/2018,19/05/2018,"A1640 FS,A3350 FS","A1640,A3350","A1660 FS","A1660",144,181,144,183,33,42,33,42,27,,"CCGT D1_Integrated Programme Schedule;M&E;Construction;M&E Construction;Condensate System;(10MAG) Condensing System",2,1,0.0000327091,0.0095625636,0.0124109868,0,0.0,0.0000812387,0.0136986301,0.0030769231,0.049375,0.0245430809,0.0392535393,0.0,0.0,0.0
1.3.1.1.20.2-6,A1660,"Assembly and Welding of Condensate Drain Tank",7112,"CCGTD1_IPS",TT_Task,"58341",-,-,-,100,TK_Complete,04/06/2018,02/06/2018,08/06/2018,05/06/2018,"A1650 FS","A1650","10MA1400 FS,10MAJ10 FS,10MAX20 FS","10MA1400,10MAJ10,10MAX20",148,185,149,185,34,43,34,43,29,,"CCGT D1_Integrated Programme Schedule;M&E;Construction;M&E Construction;Condensate System;(10MAG) Condensing System",1,3,0.000032088,0.0093591048,0.0126144456,4,1.0,0.0001503957,0.0068493151,0.0092307692,0.0484375,0.0240208877,0.0398970399,0.0089686099,1.0,0.0283369572
1.3.1.1.20.2-7,A1670,"Placing Steam Shell (lower part) and Connection Weld",7112,"CCGTD1_IPS",TT_Task,"58341",-,-,-,100,TK_Complete,23/05/2018,22/05/2018,02/06/2018,23/05/2018,"","","A1700 FS,A1690 FS","A1700,A1690",147,183,148,183,34,42,34,42,28,,"CCGT D1_Integrated Programme Schedule;M&E;Construction;M&E Construction;Condensate System;(10MAG) Condensing System",0,2,0.0,0.0130213632,0.0,10,1.0,0.0000812387,0.0,0.0061538462,0.0,0.0334203655,0.0,0.0224215247,1.0,0.0
1.3.1.1.20.2-8,A1680,"Placing, Aligning and Grouting of Vacuum Pumps",7112,"CCGTD1_IPS",TT_Task,"58341",-,-,-,100,TK_Complete,01/04/2019,04/04/2019,12/04/2019,07/06/2019,"A3370 FS,KD_C17 FS","A3370,KD_C17","","",191,228,193,238,44,53,45,55,50,,"CCGT D1_Integrated Programme Schedule;M&E;Construction;M&E Construction;Condensate System;(10MAG) Condensing System",2,0,0.0,0.0,0.0006103764,11,0.0,0.0001515178,0.0136986301,0.0,0.0,0.0,0.0019305019,0.0246636771,0.0,0.0287967013
1.3.1.1.20.2-9,A1690,"Installing Protective Covers for Cooling Tubes",7112,"CCGTD1_IPS",TT_Task,"58341",-,-,-,100,TK_Complete,26/07/2018,11/06/2018,28/07/2018,13/06/2018,"A1670 FS","A1670","","",156,186,156,186,36,43,36,43,33,,"CCGT D1_Integrated Programme Schedule;M&E;Construction;M&E Construction;Condensate System;(10MAG) Condensing System",1,0,0.0,0.0,0.0002034588,2,1.0,0.0001273434,0.0068493151,0.0,0.0,0.0,0.0006435006,0.0044843049,1.0,0.0188913048
1.3.1.1.20.2-10,A1700,"Alignment of Condenser Steam Shell",7112,"CCGTD1_IPS",TT_Task,"58341",-,-,-,100,TK_Complete,16/08/2018,22/05/2018,17/08/2018,25/05/2018,"A1670 FS","A1670","A1710 FS","A1710",159,183,159,184,37,42,37,42,34,,"CCGT D1_Integrated Programme Schedule;M&E;Construction;M&E Construction;Condensate System;(10MAG) Condensing System",1,1,0.000002567,0.0126144456,0.0002034588,1,0.8,0.0001042911,0.0068493151,0.0030769231,0.003875,0.0323759791,0.0006435006,0.0022421525,0.8,0.0094456524
1.3.1.1.20.2-11,A1710,"Condenser Ready for Preassembling Piping",7112,"CCGTD1_IPS",TT_Mile,"58341",-,-,-,100,TK_Complete,29/09/2018,31/08/2018,29/09/2018,31/08/2018,"A1700 FS","A1700","A2590 FS,A1720 FS,A1750 FS","A2590,A1720,A1750",165,198,165,198,38,46,38,46,37,,"CCGT D1_Integrated Programme Schedule;M&E;Construction;M&E Construction;Condensate System;(10MAG) Condensing System",1,3,0.0000050513,0.0124109868,0.0004069176,0,1.0,0.0000812387,0.0068493151,0.0092307692,0.007625,0.0318537859,0.0012870013,0.0,1.0,0.0
1.3.1.1.20.2-12,A1720,"Assembly and Welding of Condenser Neck",7112,"CCGTD1_IPS",TT_Task,"58341",-,-,-,100,TK_Complete,17/08/2018,15/06/2018,13/09/2018,31/08/2018,"A1710 FS","A1710","A1730 FS","A1730",159,187,163,198,37,43,38,46,34,,"CCGT D1_Integrated Programme Schedule;M&E;Construction;M&E Construction;Condensate System;(10MAG) Condensing System",1,1,0.0000039748,0.0093591048,0.0006103764,27,0.0,0.0001058077,0.0068493151,0.0030769231,0.006,0.0240208877,0.0019305019,0.0605381166,0.0,0.0100670769
1.3.1.1.20.2-13,A1730,"Fitting and Welding of Guide Bolts and Stiffening Plates",7112,"CCGTD1_IPS",TT_Task,"58341",-,-,-,100,TK_Complete,13/09/2018,17/06/2018,26/09/2018,21/01/2019,"A1720 FS","A1720","A1740 FS,A1840 FS","A1740,A1840",163,187,165,218,38,43,38,50,36,,"CCGT D1_Integrated Programme Schedule;M&E;Construction;M&E Construction;Condensate System;(10MAG) Condensing System",1,2,0.0000057137,0.009155646,0.0008138352,13,0.0,0.0001713024,0.0068493151,0.0061538462,0.008625,0.0234986945,0.0025740026,0.0291479821,0.0,0.0369034116
1.3.1.1.20.2-14,A1740,"Installing and Wedling of Seismic Tie Down",7112,"CCGTD1_IPS",TT_Task,"58341",-,-,-,100,TK_Complete,04/04/2019,04/04/2019,09/04/2019,10/04/2019,"A1730 FS,A1630 FS","A1730,A1630","A1850 FS","A1850",192,228,192,229,44,53,45,53,52,,"CCGT D1_Integrated Programme Schedule;M&E;Construction;M&E Construction;Condensate System;(10MAG) Condensing System",2,1,0.0000075355,0.0032553408,0.013224822,5,0.8,0.0002474313,0.0136986301,0.0030769231,0.011375,0.0083550914,0.0418275418,0.0112107623,0.8,0.0680971048
1.3.1.1.20.2-15,A1750,"Assemble and Weld Nozzles into Steam Dome",7112,"CCGTD1_IPS",TT_Task,"58341",-,-,-,100,TK_Complete,29/09/2018,03/09/2018,13/10/2018,15/10/2018,"A1710 FS","A1710","A2590 FS,A1760 FS","A2590,A1760",165,198,167,204,38,46,39,47,37,,"CCGT D1_Integrated Programme Schedule;M&E;Construction;M&E Construction;Condensate System;(10MAG) Condensing System",1,2,0.0000003726,0.0109867752,0.0006103764,14,0.0,0.0000939782,0.0068493151,0.0061538462,0.0005625,0.0281984334,0.0019305019,0.0313901345,0.0,0.0052199658
1.3.1.1.20.2-16,A1760,"Vacuum Test Water Side",7112,"CCGTD1_IPS",TT_Task,"58341",-,-,-,100,TK_Complete,31/12/2018,11/12/2018,02/01/2019,09/01/2019,"A1750 FS,KD_C17 FS","A1750,KD_C17","A1770 FS","A1770",178,212,179,216,41,49,41,50,43,,"CCGT D1_Integrated Programme Schedule;M&E;Construction;M&E Construction;Condensate System;(10MAG) Condensing System",2,1,0.0000015319,0.0085452696,0.001017294,2,0.0,0.0000857669,0.0136986301,0.0030769231,0.0023125,0.0219321149,0.0032175032,0.0044843049,0.0,0.0018554181
1.3.1.1.20.2-17,A1770,"Check Corrosion Protection on CW Side",7112,"CCGTD1_IPS",TT_Task,"58341",-,-,-,100,TK_Complete,02/01/2019,14/01/2019,19/01/2019,21/01/2019,"A1760 FS","A1760","A1780 FS","A1780",179,217,181,218,41,50,42,50,43,,"CCGT D1_Integrated Programme Schedule;M&E;Construction;M&E Construction;Condensate System;(10MAG) Condensing System",1,1,0.0000030225,0.0083418108,0.0012207528,17,1.0,0.0001542495,0.0068493151,0.0030769231,0.0045625,0.0214099217,0.0038610039,0.0381165919,1.0,0.02991604
1.3.1.1.20.2-18,A1780,"Fitting and Bolting of Front and Rear Coverwith Seal",7112,"CCGTD1_IPS",TT_Task,"58341",-,-,-,100,TK_Complete,12/10/2018,03/06/2018,20/10/2018,13/06/2018,"A1770 FS","A1770","A1790 FS","A1790",167,185,168,186,39,43,39,43,37,,"CCGT D1_Integrated Programme Schedule;M&E;Construction;M&E Construction;Condensate System;(10MAG) Condensing System",1,1,0.0000044302,0.008138352,0.0014242116,8,0.8,0.0002125276,0.0068493151,0.0030769231,0.0066875,0.0208877285,0.0045045045,0.0179372197,0.8,0.0537953509
1.3.1.1.20.2-19,A1790,"Connection and Welding of Rear Cover",7112,"CCGTD1_IPS",TT_Task,"58341",-,-,-,100,TK_Complete,01/04/2019,03/04/2019,09/04/2019,11/04/2019,"A1780 FS,A1840 FS,KD_C17 FS","A1780,A1840,KD_C17","A1800 FS,10MAN1000 FS","A1800,10MAN1000",191,228,192,229,44,53,45,53,50,,"CCGT D1_Integrated Programme Schedule;M&E;Construction;M&E Construction;Condensate System;(10MAG) Condensing System",3,2,0.0000135391,0.0079348932,0.0022380468,8,1.0,0.000414931,0.0205479452,0.0061538462,0.0204375,0.0203655352,0.0070785071,0.0179372197,1.0,0.1367297658
1.3.1.1.20.2-20,A1800,"Condenser Ready for PAB Piping",7112,"CCGTD1_IPS",TT_Mile,"58341",-,-,-,100,TK_Complete,04/05/2019,04/05/2019,04/05/2019,04/05/2019,"A1790 FS,A1820 FS,KD_C17 FS,KD_C27 FS","A1790,A1820,KD_C17,KD_C27","A1830 FS,10PAB-02-20 SF","A1830,10PAB-02-20",196,233,196,233,45,54,45,54,57,,"CCGT D1_Integrated Programme Schedule;M&E;Construction;M&E Construction;Condensate System;(10MAG) Condensing System",4,2,0.0000354245,0.0052899288,0.0150559512,0,1.0,0.0000812387,0.0273972603,0.0061538462,0.0534739583,0.0135770235,0.0476190476,0.0,1.0,0.0
1.3.1.1.20.2-21,A1810,"Fitting of Condenser to LP Turbine",7112,"CCGTD1_IPS",TT_Task,"58341",-,-,-,100,TK_Complete,30/01/2019,30/01/2019,18/02/2019,04/05/2019,"A1890 FS","A1890","A1820 FS","A1820",183,219,185,233,42,51,43,54,46,,"CCGT D1_Integrated Programme Schedule;M&E;Construction;M&E Construction;Condensate System;(10MAG) Condensing System",1,1,0.0001240323,0.0130213632,0.0120040692,19,0.0,0.0003042866,0.0068493151,0.0030769231,0.1872291667,0.0334203655,0.037966538,0.0426008969,0.0,0.0913934569
1.3.1.1.20.2-22,A1820,"Welding of Condenser to LP Turbine",7112,"CCGTD1_IPS",TT_Task,"58341",-,-,-,100,TK_Complete,19/02/2019,19/02/2019,22/02/2019,22/02/2019,"A1810 FS","A1810","A2590 FS,A1830 FS,10PAH20 FS,A1800 FS,10MAJ10 FS","A2590,A1830,10PAH20,A1800,10MAJ10",185,222,186,223,43,51,43,52,47,,"CCGT D1_Integrated Programme Schedule;M&E;Construction;M&E Construction;Condensate System;(10MAG) Condensing System",1,5,0.0001241979,0.0128179044,0.012207528,3,1.0,0.000340811,0.0068493151,0.0153846154,0.1874791667,0.0328981723,0.0386100386,0.0067264574,1.0,0.1063592539
1.3.1.1.20.2-23,A1830,"Floating of Bypass Station",7112,"CCGTD1_IPS",TT_Task,"58341",-,-,-,100,TK_Complete,31/05/2019,22/06/2019,11/06/2019,07/09/2019,"A1820 FS,A1800 FS","A1820,A1800","A3380 FS","A3380",200,240,201,251,46,56,47,58,60,,"CCGT D1_Integrated Programme Schedule;M&E;Construction;M&E Construction;Condensate System;(10MAG) Condensing System",2,1,0.0000065815,0.0026449644,0.01525941,11,0.0,0.0001371562,0.0136986301,0.0030769231,0.0099348958,0.0067885117,0.0482625483,0.0246636771,0.0,0.0229120669
1.3.1.1.20.2-24,A1840,"Assembly and Welding of Condenser Neck Structure",7112,"CCGTD1_IPS",TT_Task,"58341",-,-,-,100,TK_Complete,03/09/2018,15/06/2018,13/09/2018,30/07/2018,"A1730 FS","A1730","A1790 FS","A1790",161,187,163,193,37,43,38,45,36,,"CCGT D1_Integrated Programme Schedule;M&E;Construction;M&E Construction;Condensate System;(10MAG) Condensing System",1,1,0.0000057137,0.008138352,0.001017294,10,0.0,0.0001784496,0.0068493151,0.0030769231,0.008625,0.0208877285,0.0032175032,0.0224215247,0.0,0.0398319616
1.3.1.1.20.2-25,A1850,"Grouting of Condenser Shell Support Structure Seismic Tie",7112,"CCGTD1_IPS",TT_Task,"58341",-,-,-,100,TK_Complete,02/02/2019,26/03/2019,12/02/2019,11/04/2019,"A1740 FS","A1740","A1860 FS","A1860",183,227,184,229,42,53,43,53,46,,"CCGT D1_Integrated Programme Schedule;M&E;Construction;M&E Construction;Condensate System;(10MAG) Condensing System",1,1,0.0000054653,0.003051882,0.0134282808,10,0.2,0.0002919124,0.0068493151,0.0030769231,0.00825,0.0078328982,0.0424710425,0.0224215247,0.2,0.0863231242
1.3.1.1.20.2-26,A1860,"Final Works and Cleaning",7112,"CCGTD1_IPS",TT_Task,"58341",-,-,-,100,TK_Complete,11/04/2019,11/04/2019,16/04/2019,29/06/2019,"A1850 FS","A1850","A1870 FS,A3380 FS","A1870,A3380",193,229,193,241,45,53,45,56,53,,"CCGT D1_Integrated Programme Schedule;M&E;Construction;M&E Construction;Condensate System;(10MAG) Condensing System",1,2,0.0000033123,0.0028484232,0.0136317396,5,0.0,0.000329866,0.0068493151,0.0061538462,0.005,0.007310705,0.0431145431,0.0112107623,0.0,0.1018745565
1.3.1.1.20.2-27,A1870,"Final Inspection",7112,"CCGTD1_IPS",TT_Task,"58341",-,-,-,100,TK_Complete,12/07/2019,20/07/2019,15/07/2019,05/10/2019,"A1860 FS,A2590 FS","A1860,A2590","A1880 FS,A3380 FS","A1880,A3380",206,244,206,255,48,56,48,59,66,,"CCGT D1_Integrated Programme Schedule;M&E;Construction;M&E Construction;Condensate System;(10MAG) Condensing System",2,2,0.0000068938,0.0026449644,0.0148524924,3,0.0,0.0002051502,0.0136986301,0.0061538462,0.01040625,0.0067885117,0.046975547,0.0067264574,0.0,0.0507724787
1.3.1.1.20.2-28,A1880,"Insulation Condenser",7112,"CCGTD1_IPS",TT_Task,"58341",-,-,-,100,TK_Complete,15/07/2019,13/07/2019,24/08/2019,14/11/2019,"A1870 FS,A3380 FF","A1870,A3380","TOP1150 FS","TOP1150",206,243,212,260,48,56,49,60,66,,"CCGT D1_Integrated Programme Schedule;M&E;Construction;M&E Construction;Condensate System;(10MAG) Condensing System",2,1,0.0000100801,0.0022380468,0.0170905392,40,0.0,0.0006051107,0.0136986301,0.0030769231,0.0152161458,0.0057441253,0.0540540541,0.0896860987,0.0,0.214655534
1.3.1.1.20.2-29,A3350,"Prepare ground to South of Condenser for 750T crane",7112,"CCGTD1_IPS",TT_Task,"58341",-,-,-,100,TK_Complete,25/04/2018,26/04/2018,03/05/2018,03/05/2018,"","","A1650 FS,A1630 FS","A1650,A1630",143,179,144,180,33,41,33,42,25,,"CCGT D1_Integrated Programme Schedule;M&E;Construction;M&E Construction;Condensate System;(10MAG) Condensing System",0,2,0.0,0.0115971516,0.0,8,1.0,0.0000812387,0.0,0.0061538462,0.0,0.0297650131,0.0,0.0179372197,1.0,0.0
1.3.1.1.20.2-30,A3360,"Hand back area South of Condenser to Civil Contractor",7112,"CCGTD1_IPS",TT_Mile,"58341",-,-,-,100,TK_Complete,15/06/2018,25/06/2018,15/06/2018,25/06/2018,"","","","",150,188,150,188,35,43,35,43,30,,"CCGT D1_Integrated Programme Schedule;M&E;Construction;M&E Construction;Condensate System;(10MAG) Condensing System",0,0,0.0,0.0,0.0,0,1.0,0.0000812387,0.0,0.0,0.0,0.0,0.0,0.0,1.0,0.0
1.3.1.1.20.2-31,A3370,"Turbine Hall Grid Line 8-10 made available by Civil Contractor",7112,"CCGTD1_IPS",TT_FinMile,"58341",-,-,-,100,TK_Complete,30/04/2019,03/05/2019,30/04/2019,03/05/2019,"KD_C27 FS","KD_C27","A1680 FS","A1680",195,233,195,233,45,54,45,54,55,,"CCGT D1_Integrated Programme Schedule;M&E;Construction;M&E Construction;Condensate System;(10MAG) Condensing System",1,1,0.0000000414,0.0002034588,0.0002034588,0,1.0,0.0000812387,0.0068493151,0.0030769231,0.0000625,0.0005221932,0.0006435006,0.0,1.0,0.0
1.3.1.1.20.2-32,A1890,"Placing and Alignment of Sliding Supports",7112,"CCGTD1_IPS",TT_Task,"58341",-,-,-,100,TK_Complete,26/01/2019,15/03/2019,29/01/2019,03/05/2019,"10MAC-1260 FS,10MAC-1270 FS","10MAC-1260,10MAC-1270","A1810 FS","A1810",182,226,182,233,42,52,42,54,44,,"CCGT D1_Integrated Programme Schedule;M&E;Construction;M&E Construction;Condensate System;(10MAG) Condensing System",2,1,0.0001237839,0.013224822,0.0118006104,3,0.0,0.0002622315,0.0136986301,0.0030769231,0.1868541667,0.0339425587,0.0373230373,0.0067264574,0.0,0.0741614542
1.3.1.1.20.2-33,A3380,"Pressure Test Condenser",7112,"CCGTD1_IPS",TT_Task,"58341",-,-,-,100,TK_Complete,18/10/2019,18/10/2019,29/10/2019,29/10/2019,"A1860 FS,A1830 FS,A1870 FS","A1860,A1830,A1870","A1880 FF","A1880",220,257,221,258,51,59,51,60,80,,"CCGT D1_Integrated Programme Schedule;M&E;Construction;M&E Construction;Condensate System;(10MAG) Condensing System",3,1,0.0000058776,0.0024415056,0.0168870804,11,1.0,0.0004549931,0.0205479452,0.0030769231,0.0088723958,0.0062663185,0.0534105534,0.0246636771,1.0,0.1531451645
1.3.1.1.21,58327,"Steam Turbine (MA)",7112,"CCGTD1_IPS",WBS,"58325",,,,100,Complete,26/07/2018,16/07/2018,08/10/2019,16/11/2019,,,,,156,191,218,261,36,44,51,60,,,"CCGT D1_Integrated Programme Schedule;M&E;Construction;M&E Construction"
1.3.1.1.21.1,58339,"(10MAJ) ST Evacuation System",7112,"CCGTD1_IPS",WBS,"58327",,,,100,Complete,06/04/2019,08/04/2019,08/10/2019,07/11/2019,,,,,192,229,218,259,44,53,51,60,,,"CCGT D1_Integrated Programme Schedule;M&E;Construction;M&E Construction;Steam Turbine (MA)"
1.3.1.1.21.1-1,10MAJ20,"Install Large Bore Pipe/Valves/Supports",7112,"CCGTD1_IPS",TT_Task,"58339",-,-,-,100,TK_Complete,13/04/2019,15/04/2019,08/05/2019,17/08/2019,"SI1--P4A40 FS,SI1--P4H40 FS,10MAJ10 FS","SI1--P4A40,SI1--P4H40,10MAJ10","10MAJ40 SS,10MAJ30 FS","10MAJ40,10MAJ30",193,230,197,248,45,53,45,57,54,,"CCGT D1_Integrated Programme Schedule;M&E;Construction;M&E Construction;Steam Turbine (MA);(10MAJ) ST Evacuation System",3,2,0.0000228757,0.0036622584,0.0144455748,25,0.0,0.0001525622,0.0205479452,0.0061538462,0.03453125,0.0093994778,0.0456885457,0.0560538117,0.0,0.0292246621
1.3.1.1.21.1-2,10MAJ50,"EC+I",7112,"CCGTD1_IPS",TT_Task,"58339",-,-,-,100,TK_Complete,28/05/2019,15/05/2019,19/06/2019,28/09/2019,"EDS.1080 FS,SI-BZK4-58 FS,SI1C--4-25 FS,10MAJ30 FS,EDS.1080 SS,SI-BZK4-25 FS","EDS.1080,SI-BZK4-58,SI1C--4-25,10MAJ30,EDS.1080,SI-BZK4-25","10MAJ90 FS","10MAJ90",199,234,203,254,46,54,47,59,60,,"CCGT D1_Integrated Programme Schedule;M&E;Construction;M&E Construction;Steam Turbine (MA);(10MAJ) ST Evacuation System",5,1,0.000003892,0.0024415056,0.0156663276,22,0.0,0.0001334824,0.0342465753,0.0030769231,0.005875,0.0062663185,0.0495495495,0.0493273543,0.0,0.0214067304
1.3.1.1.21.1-3,10MAJ10,"Install Equipment/Skids/Pumps",7112,"CCGTD1_IPS",TT_Task,"58339",-,-,-,100,TK_Complete,06/04/2019,08/04/2019,13/04/2019,07/06/2019,"KD_B06 FS,SI1MAJ4-44 FS,A1660 FS,KD_C04 FS,A1820 FS,KD_C27 FS","KD_B06,SI1MAJ4-44,A1660,KD_C04,A1820,KD_C27","00BAW-02-40 FF,10MAJ20 FS","00BAW-02-40,10MAJ20",192,229,193,238,44,53,45,55,52,,"CCGT D1_Integrated Programme Schedule;M&E;Construction;M&E Construction;Steam Turbine (MA);(10MAJ) ST Evacuation System",6,2,0.0000418942,0.00508647,0.0138351984,7,0.0,0.0001985703,0.0410958904,0.0061538462,0.0632401042,0.0130548303,0.0437580438,0.0156950673,0.0,0.0480763883
1.3.1.1.21.1-4,10MAJ30,"Install Small Bore Pipe/Valves/Supports",7112,"CCGTD1_IPS",TT_Task,"58339",-,-,-,100,TK_Complete,23/04/2019,23/04/2019,17/05/2019,17/08/2019,"SI1--P4H40 FS,10MAJ20 FS,SI1--P4A40 FS","SI1--P4H40,10MAJ20,SI1--P4A40","10MAJ50 FS,10MAJ40 FF,10MAJ80 FS","10MAJ50,10MAJ40,10MAJ80",194,231,198,248,45,54,46,57,55,,"CCGT D1_Integrated Programme Schedule;M&E;Construction;M&E Construction;Steam Turbine (MA);(10MAJ) ST Evacuation System",3,3,0.0000125661,0.0034587996,0.0146490336,24,0.0,0.0001435497,0.0205479452,0.0092307692,0.01896875,0.0088772846,0.0463320463,0.0538116592,0.0,0.0255318175
1.3.1.1.21.1-5,10MAJ40,"NDE",7112,"CCGTD1_IPS",TT_Task,"58339",-,-,-,100,TK_Complete,11/05/2019,11/05/2019,07/06/2019,25/09/2019,"10MAJ20 SS,10MAJ30 FF","10MAJ20,10MAJ30","10MAJ60 FS","10MAJ60",197,234,201,253,46,54,46,59,58,,"CCGT D1_Integrated Programme Schedule;M&E;Construction;M&E Construction;Steam Turbine (MA);(10MAJ) ST Evacuation System",2,1,0.000006045,0.0028484232,0.0148524924,27,0.0,0.000202321,0.0136986301,0.0030769231,0.009125,0.007310705,0.046975547,0.0605381166,0.0,0.0496132514
1.3.1.1.21.1-6,10MAJ60,"Line Inspection",7112,"CCGTD1_IPS",TT_Task,"58339",-,-,-,100,TK_Complete,14/08/2019,21/08/2019,20/08/2019,31/08/2019,"10MAJ40 FS","10MAJ40","10MAJ70 FS","10MAJ70",211,248,211,250,49,58,49,58,69,,"CCGT D1_Integrated Programme Schedule;M&E;Construction;M&E Construction;Steam Turbine (MA);(10MAJ) ST Evacuation System",1,1,0.0000035607,0.0026449644,0.0150559512,6,0.8,0.0002534402,0.0068493151,0.0030769231,0.005375,0.0067885117,0.0476190476,0.0134529148,0.8,0.0705592426
1.3.1.1.21.1-7,10MAJ70,"Hydro Test",7112,"CCGTD1_IPS",TT_Task,"58339",-,-,-,100,TK_Complete,30/09/2019,05/10/2019,08/10/2019,12/10/2019,"10MAJ60 FS","10MAJ60","10MAJ90 FS","10MAJ90",217,255,218,256,50,59,51,59,77,,"CCGT D1_Integrated Programme Schedule;M&E;Construction;M&E Construction;Steam Turbine (MA);(10MAJ) ST Evacuation System",1,1,0.0000009937,0.0024415056,0.01525941,8,1.0,0.0002969986,0.0068493151,0.0030769231,0.0015,0.0062663185,0.0482625483,0.0179372197,1.0,0.0884071893
1.3.1.1.21.1-8,10MAJ80,"Painting/Insulation",7112,"CCGTD1_IPS",TT_Task,"58339",-,-,-,100,TK_Complete,14/06/2019,17/06/2019,28/06/2019,07/11/2019,"10MAJ30 FS","10MAJ30","10MAJ90 FF","10MAJ90",202,239,204,259,47,55,47,60,63,,"CCGT D1_Integrated Programme Schedule;M&E;Construction;M&E Construction;Steam Turbine (MA);(10MAJ) ST Evacuation System",1,1,0.0000034779,0.0024415056,0.0148524924,14,0.0,0.0001083893,0.0068493151,0.0030769231,0.00525,0.0062663185,0.046975547,0.0313901345,0.0,0.0111248802
1.3.1.1.21.1-9,10MAJ90,"Pre-Commissioning/Flushing/Cleaning",7112,"CCGTD1_IPS",TT_Task,"58339",-,-,-,100,TK_Complete,11/09/2019,11/09/2019,19/09/2019,07/11/2019,"10MAJ50 FS,10MAJ70 FS,10MAJ80 FF","10MAJ50,10MAJ70,10MAJ80","TOP2090 FS","TOP2090",215,251,216,259,50,58,50,60,76,,"CCGT D1_Integrated Programme Schedule;M&E;Construction;M&E Construction;Steam Turbine (MA);(10MAJ) ST Evacuation System",3,1,0.000006459,0.0022380468,0.0166836216,8,0.0,0.0005400158,0.0205479452,0.0030769231,0.00975,0.0057441253,0.0527670528,0.0179372197,0.0,0.1879830529
1.3.1.1.21.2,58338,"(10MAL) ST Drain System",7112,"CCGTD1_IPS",WBS,"58327",,,,100,Complete,29/09/2018,01/08/2018,04/10/2019,12/11/2019,,,,,165,193,218,260,38,45,50,60,,,"CCGT D1_Integrated Programme Schedule;M&E;Construction;M&E Construction;Steam Turbine (MA)"
1.3.1.1.21.2-1,10MAL20,"Install Large Bore Pipe/Valves/Supports",7112,"CCGTD1_IPS",TT_Task,"58338",-,-,-,100,TK_Complete,06/04/2019,09/04/2019,11/05/2019,28/08/2019,"10MAA-1060 FS,SC1130 FS,SI1--P4A40 FS,10MAL10 FS,SI1--P4H40 FS,10MKB90 FS","10MAA-1060,SC1130,SI1--P4A40,10MAL10,SI1--P4H40,10MKB90","10MAL40 FF,10MAL30 FF,10MAL80 FS","10MAL40,10MAL30,10MAL80",192,229,197,249,44,53,46,58,52,,"CCGT D1_Integrated Programme Schedule;M&E;Construction;M&E Construction;Steam Turbine (MA);(10MAL) ST Drain System",6,3,0.0000161889,0.0036622584,0.0087487284,35,0.0,0.000573724,0.0410958904,0.0092307692,0.0244375,0.0093994778,0.0276705277,0.0784753363,0.0,0.2017949301
1.3.1.1.21.2-2,10MAL80,"Painting/Insulation",7112,"CCGTD1_IPS",TT_Task,"58338",-,-,-,100,TK_Complete,05/06/2019,23/05/2019,19/07/2019,12/11/2019,"10MAL20 FS","10MAL20","10MAL90 FF","10MAL90",201,235,207,260,46,55,48,60,61,,"CCGT D1_Integrated Programme Schedule;M&E;Construction;M&E Construction;Steam Turbine (MA);(10MAL) ST Drain System",1,1,0.000003233,0.0024415056,0.0089521872,44,0.0,0.0002802912,0.0068493151,0.0030769231,0.0048802083,0.0062663185,0.0283140283,0.0986547085,0.0,0.0815613746
1.3.1.1.21.2-3,10MAL50,"EC+I",7112,"CCGTD1_IPS",TT_Task,"58338",-,-,-,100,TK_Complete,12/06/2019,12/06/2019,03/07/2019,27/09/2019,"EDS.1080 FS,SI-BZK4-25 FS,10MAL30 FS,EDS.1080 SS,SI1C--4-25 FS,SI-BZK4-58 FS","EDS.1080,SI-BZK4-25,10MAL30,EDS.1080,SI1C--4-25,SI-BZK4-58","10MAL90 FF","10MAL90",202,238,205,254,47,55,47,59,62,,"CCGT D1_Integrated Programme Schedule;M&E;Construction;M&E Construction;Steam Turbine (MA);(10MAL) ST Drain System",5,1,0.0000007715,0.0024415056,0.0099694812,21,0.0,0.0001767468,0.0342465753,0.0030769231,0.0011645833,0.0062663185,0.0315315315,0.0470852018,0.0,0.0391342628
1.3.1.1.21.2-4,10MAL30,"Install Small Bore Pipe/Valves/Supports",7112,"CCGTD1_IPS",TT_Task,"58338",-,-,-,100,TK_Complete,27/04/2019,27/04/2019,01/06/2019,28/08/2019,"SI1--P4A40 FS,10MAL20 FF,SI1--P4H40 FS","SI1--P4A40,10MAL20,SI1--P4H40","10MAL50 FS,10MAL40 FF","10MAL50,10MAL40",195,232,200,249,45,54,46,58,55,,"CCGT D1_Integrated Programme Schedule;M&E;Construction;M&E Construction;Steam Turbine (MA);(10MAL) ST Drain System",3,2,0.0000020495,0.0032553408,0.0089521872,35,0.0,0.0002413639,0.0205479452,0.0061538462,0.00309375,0.0083550914,0.0283140283,0.0784753363,0.0,0.0656109929
1.3.1.1.21.2-5,10MAL40,"NDE",7112,"CCGTD1_IPS",TT_Task,"58338",-,-,-,100,TK_Complete,28/05/2019,21/05/2019,26/06/2019,25/09/2019,"10MAL20 FF,10MAL30 FF","10MAL20,10MAL30","10MAL90 FS,10MAL60 FS","10MAL90,10MAL60",199,235,204,253,46,54,47,59,60,,"CCGT D1_Integrated Programme Schedule;M&E;Construction;M&E Construction;Steam Turbine (MA);(10MAL) ST Drain System",2,2,0.0000072077,0.0028484232,0.009155646,29,0.0,0.0003316983,0.0136986301,0.0061538462,0.0108802083,0.007310705,0.028957529,0.0650224215,0.0,0.1026253457
1.3.1.1.21.2-6,10MAL60,"Line Inspection",7112,"CCGTD1_IPS",TT_Task,"58338",-,-,-,100,TK_Complete,31/08/2019,10/09/2019,04/09/2019,14/09/2019,"10MAL40 FS","10MAL40","10MAL70 FS","10MAL70",213,251,214,252,49,58,49,58,70,,"CCGT D1_Integrated Programme Schedule;M&E;Construction;M&E Construction;Steam Turbine (MA);(10MAL) ST Drain System",1,1,0.0000019046,0.0026449644,0.0093591048,4,1.0,0.0001682087,0.0068493151,0.0030769231,0.002875,0.0067885117,0.0296010296,0.0089686099,1.0,0.035635794
1.3.1.1.21.2-7,10MAL70,"Hydro Test",7112,"CCGTD1_IPS",TT_Task,"58338",-,-,-,100,TK_Complete,30/09/2019,05/10/2019,04/10/2019,12/10/2019,"10MAL60 FS","10MAL60","10MAL90 FS","10MAL90",217,255,218,256,50,59,50,59,77,,"CCGT D1_Integrated Programme Schedule;M&E;Construction;M&E Construction;Steam Turbine (MA);(10MAL) ST Drain System",1,1,0.0000004968,0.0024415056,0.0095625636,4,1.0,0.0002245682,0.0068493151,0.0030769231,0.00075,0.0062663185,0.0302445302,0.0089686099,1.0,0.0587289865
1.3.1.1.21.2-8,10MAL90,"Pre-Commissioning/Flushing/Cleaning",7112,"CCGTD1_IPS",TT_Task,"58338",-,-,-,100,TK_Complete,10/09/2019,10/09/2019,19/09/2019,12/11/2019,"10MAL50 FF,10MAL40 FS,10MAL70 FS,10MAL80 FF","10MAL50,10MAL40,10MAL70,10MAL80","TOP1120 FS,SC1070 FS","TOP1120,SC1070",214,251,216,260,50,58,50,60,76,,"CCGT D1_Integrated Programme Schedule;M&E;Construction;M&E Construction;Steam Turbine (MA);(10MAL) ST Drain System",4,2,0.0000077342,0.0022380468,0.0109867752,9,0.0,0.0008581468,0.0273972603,0.0061538462,0.011675,0.0057441253,0.0347490347,0.0201793722,0.0,0.3183366018
1.3.1.1.21.2-9,10MAL10,"Install Steam Turbine Drain Module (MAL00Y)",7112,"CCGTD1_IPS",TT_Task,"58338",-,-,-,100,TK_Complete,24/10/2018,01/08/2018,29/10/2018,22/09/2018,"SI1MAL4-40 FS,SI1MAL4-25 FS,KD_B06 FS,SI1LCL4B40 FS,10MAL10a FS","SI1MAL4-40,SI1MAL4-25,KD_B06,SI1LCL4B40,10MAL10a","SC1130 FS,10MAL20 FS","SC1130,10MAL20",169,193,169,201,39,45,39,46,38,,"CCGT D1_Integrated Programme Schedule;M&E;Construction;M&E Construction;Steam Turbine (MA);(10MAL) ST Drain System",5,2,0.0000041818,0.004069176,0.0014242116,5,0.0,0.0003622438,0.0342465753,0.0061538462,0.0063125,0.0104438642,0.0045045045,0.0112107623,0.0,0.1151413071
1.3.1.1.21.2-10,10MAL10a,"Resolution of Foundation Embedment problem (Civil Issue)",7112,"CCGTD1_IPS",TT_Task,"58338",-,-,-,100,TK_Complete,29/09/2018,29/09/2018,23/10/2018,20/10/2018,"","","10MAL10 FS","10MAL10",165,202,168,205,38,47,39,47,37,,"CCGT D1_Integrated Programme Schedule;M&E;Construction;M&E Construction;Steam Turbine (MA);(10MAL) ST Drain System",0,1,0.0,0.0042726348,0.0,24,1.0,0.0000812387,0.0,0.0030769231,0.0,0.0109660574,0.0,0.0538116592,1.0,0.0
1.3.1.1.21.3,58337,"(10MAW) Gland / Leakage Steam System",7112,"CCGTD1_IPS",WBS,"58327",,,,100,Complete,01/04/2019,12/04/2019,19/09/2019,12/11/2019,,,,,191,230,216,260,44,53,50,60,,,"CCGT D1_Integrated Programme Schedule;M&E;Construction;M&E Construction;Steam Turbine (MA)"
1.3.1.1.21.3-1,10MAW30,"Install Large Bore Pipe/Valves/Supports",7112,"CCGTD1_IPS",TT_Task,"58337",-,-,-,100,TK_Complete,30/04/2019,10/05/2019,11/05/2019,17/08/2019,"SI1--P4A40 FS,SI1--P4H40 FS,10MAW10 FS","SI1--P4A40,SI1--P4H40,10MAW10","10MAW60 FS,10MAW40 FS,10MAW90 FS,10MAW50 SS","10MAW60,10MAW40,10MAW90,10MAW50",195,234,197,248,45,54,46,57,55,,"CCGT D1_Integrated Programme Schedule;M&E;Construction;M&E Construction;Steam Turbine (MA);(10MAW) Gland / Leakage Steam System",3,4,0.000006045,0.0044760936,0.0026449644,11,0.0,0.0001131372,0.0205479452,0.0123076923,0.009125,0.0114882507,0.0083655084,0.0246636771,0.0,0.0130703386
1.3.1.1.21.3-2,10MAW90,"Painting/Insulation",7112,"CCGTD1_IPS",TT_Task,"58337",-,-,-,100,TK_Complete,05/06/2019,18/06/2019,22/06/2019,12/11/2019,"10MAW30 FS","10MAW30","10MAW100 FS","10MAW100",201,239,203,260,46,55,47,60,61,,"CCGT D1_Integrated Programme Schedule;M&E;Construction;M&E Construction;Steam Turbine (MA);(10MAW) Gland / Leakage Steam System",1,1,0.0000019149,0.0032553408,0.0028484232,17,0.0,0.000095858,0.0068493151,0.0030769231,0.002890625,0.0083550914,0.009009009,0.0381165919,0.0,0.0059902241
1.3.1.1.21.3-3,10MAW60,"EC+I",7112,"CCGTD1_IPS",TT_Task,"58337",-,-,-,100,TK_Complete,05/06/2019,27/06/2019,11/07/2019,24/09/2019,"10MAW30 FS,SI1C--4-25 FS,SI-BZK4-25 FS,SI-BZK4-58 FS","10MAW30,SI1C--4-25,SI-BZK4-25,SI-BZK4-58","10MAW100 FS","10MAW100",201,240,206,253,46,56,48,59,61,,"CCGT D1_Integrated Programme Schedule;M&E;Construction;M&E Construction;Steam Turbine (MA);(10MAW) Gland / Leakage Steam System",4,1,0.00000295,0.0032553408,0.0034587996,36,0.0,0.000122447,0.0273972603,0.0030769231,0.004453125,0.0083550914,0.0109395109,0.0807174888,0.0,0.0168850344
1.3.1.1.21.3-4,10MAW10,"Install Gland Steam Condenser (MAW)",7112,"CCGTD1_IPS",TT_Task,"58337",-,-,-,100,TK_Complete,01/04/2019,12/04/2019,04/04/2019,15/05/2019,"KD_C04 FS,SI1MAW4-40 FS,KD_B06 FS,KD_C17 FS","KD_C04,SI1MAW4-40,KD_B06,KD_C17","10MAW30 FS,00BAW-02-40 FF","10MAW30,00BAW-02-40",191,230,192,234,44,53,44,54,49,,"CCGT D1_Integrated Programme Schedule;M&E;Construction;M&E Construction;Steam Turbine (MA);(10MAW) Gland / Leakage Steam System",4,2,0.0000065104,0.0059003052,0.002034588,3,0.0,0.0001539663,0.0273972603,0.0061538462,0.0098276042,0.0151436031,0.0064350064,0.0067264574,0.0,0.0298000009
1.3.1.1.21.3-5,10MAW40,"Install Small Bore Pipe/Valves/Supports",7112,"CCGTD1_IPS",TT_Task,"58337",-,-,-,100,TK_Complete,18/04/2019,18/04/2019,23/05/2019,17/08/2019,"SI1--P4H40 FS,10MAW30 FS,SI1--P4A40 FS","SI1--P4H40,10MAW30,SI1--P4A40","10MAW50 FF","10MAW50",194,230,199,248,45,53,46,57,54,,"CCGT D1_Integrated Programme Schedule;M&E;Construction;M&E Construction;Steam Turbine (MA);(10MAW) Gland / Leakage Steam System",3,1,0.0000001863,0.0038657172,0.0028484232,35,0.0,0.0001131252,0.0205479452,0.0030769231,0.00028125,0.009921671,0.009009009,0.0784753363,0.0,0.0130654411
1.3.1.1.21.3-6,10MAW50,"NDE",7112,"CCGTD1_IPS",TT_Task,"58337",-,-,-,100,TK_Complete,25/05/2019,14/05/2019,18/06/2019,24/09/2019,"10MAW40 FF,10MAW30 SS","10MAW40,10MAW30","10MAW80 FS,10MAW70 FS","10MAW80,10MAW70",199,234,202,253,46,54,47,59,59,,"CCGT D1_Integrated Programme Schedule;M&E;Construction;M&E Construction;Steam Turbine (MA);(10MAW) Gland / Leakage Steam System",2,2,0.0000019046,0.0036622584,0.003051882,24,0.0,0.0001981794,0.0136986301,0.0061538462,0.002875,0.0093994778,0.0096525097,0.0538116592,0.0,0.0479162163
1.3.1.1.21.3-7,10MAW70,"Line Inpsection",7112,"CCGTD1_IPS",TT_Task,"58337",-,-,-,100,TK_Complete,14/08/2019,23/08/2019,21/08/2019,30/08/2019,"10MAW50 FS","10MAW50","10MAW80 FS","10MAW80",211,249,212,250,49,58,49,58,69,,"CCGT D1_Integrated Programme Schedule;M&E;Construction;M&E Construction;Steam Turbine (MA);(10MAW) Gland / Leakage Steam System",1,1,0.0,0.0034587996,0.0032553408,7,1.0,0.0001655927,0.0068493151,0.0030769231,0.0,0.0088772846,0.0102960103,0.0156950673,1.0,0.0345638769
1.3.1.1.21.3-8,10MAW80,"Hydro Test",7112,"CCGTD1_IPS",TT_Task,"58337",-,-,-,100,TK_Complete,22/08/2019,24/08/2019,29/08/2019,31/08/2019,"10MAW50 FS,10MAW70 FS","10MAW50,10MAW70","10MAW100 FS","10MAW100",212,249,213,250,49,58,49,58,70,,"CCGT D1_Integrated Programme Schedule;M&E;Construction;M&E Construction;Steam Turbine (MA);(10MAW) Gland / Leakage Steam System",2,1,0.0000019874,0.0032553408,0.0034587996,7,1.0,0.0003065874,0.0136986301,0.0030769231,0.003,0.0083550914,0.0109395109,0.0156950673,1.0,0.0923361989
1.3.1.1.21.3-9,10MAW100,"Pre-Commissioning/Flushing/Cleaning",7112,"CCGTD1_IPS",TT_Task,"58337",-,-,-,100,TK_Complete,11/09/2019,11/09/2019,19/09/2019,12/11/2019,"10MAW60 FS,10MAW80 FS,10MAW90 FS","10MAW60,10MAW80,10MAW90","TOP1170 FS,SC1070 FS","TOP1170,SC1070",215,251,216,260,50,58,50,60,76,,"CCGT D1_Integrated Programme Schedule;M&E;Construction;M&E Construction;Steam Turbine (MA);(10MAW) Gland / Leakage Steam System",3,2,0.0000078874,0.003051882,0.0046795524,8,0.0,0.0005281469,0.0205479452,0.0061538462,0.01190625,0.0078328982,0.0148005148,0.0179372197,0.0,0.1831197624
1.3.1.1.21.4,58336,"(10MAN) ST Bypass System",7112,"CCGTD1_IPS",WBS,"58327",,,,100,Complete,25/04/2019,25/04/2019,30/09/2019,07/11/2019,,,,,195,231,217,259,45,54,50,60,,,"CCGT D1_Integrated Programme Schedule;M&E;Construction;M&E Construction;Steam Turbine (MA)"
1.3.1.1.21.4-1,10MAN1020,"Install Large Bore Pipe/Valves/Supports",7112,"CCGTD1_IPS",TT_Task,"58336",-,-,-,100,TK_Complete,25/04/2019,25/04/2019,24/05/2019,31/08/2019,"SI1--P4A40 FS,SI1--P4H40 FS,10MAC-1080 FS,10MAN1010 FS","SI1--P4A40,SI1--P4H40,10MAC-1080,10MAN1010","10MAN1050 SS,10MAN1060 FS,10MAN1090 FS","10MAN1050,10MAN1060,10MAN1090",195,231,199,250,45,54,46,58,55,,"CCGT D1_Integrated Programme Schedule;M&E;Construction;M&E Construction;Steam Turbine (MA);(10MAN) ST Bypass System",4,3,0.0000112619,0.0038657172,0.011190234,29,0.0,0.0004814564,0.0273972603,0.0092307692,0.017,0.009921671,0.0353925354,0.0650224215,0.0,0.163988424
1.3.1.1.21.4-2,10MAN1090,"Painting/Insulation",7112,"CCGTD1_IPS",TT_Task,"58336",-,-,-,100,TK_Complete,29/06/2019,25/06/2019,20/07/2019,26/10/2019,"10MAN1010 FS,10MAN1020 FS","10MAN1010,10MAN1020","10MAN110 FS","10MAN110",204,240,207,258,47,56,48,60,65,,"CCGT D1_Integrated Programme Schedule;M&E;Construction;M&E Construction;Steam Turbine (MA);(10MAN) ST Bypass System",2,1,0.0000056741,0.0024415056,0.0113936928,21,0.0,0.0002705267,0.0136986301,0.0030769231,0.0085651042,0.0062663185,0.036036036,0.0470852018,0.0,0.0775603806
1.3.1.1.21.4-3,10MAN1060,"EC+I",7112,"CCGTD1_IPS",TT_Task,"58336",-,-,-,100,TK_Complete,07/06/2019,24/05/2019,06/07/2019,25/09/2019,"EDS.1080 FS,SI1C--4-25 FS,SI-BZK4-58 FS,SI-BZK4-25 FS,10MAN1010 FS,SI1--P4H40 FS,SI1--P4A40 FS,10MAN1020 FS","EDS.1080,SI1C--4-25,SI-BZK4-58,SI-BZK4-25,10MAN1010,SI1--P4H40,SI1--P4A40,10MAN1020","10MAN110 FS","10MAN110",201,236,205,253,46,55,47,59,62,,"CCGT D1_Integrated Programme Schedule;M&E;Construction;M&E Construction;Steam Turbine (MA);(10MAN) ST Bypass System",8,1,0.0000064318,0.0024415056,0.012207528,29,0.0,0.0003567441,0.0547945205,0.0030769231,0.0097088542,0.0062663185,0.0386100386,0.0650224215,0.0,0.1128877941
1.3.1.1.21.4-4,10MAN1075,"Neutral Float & Final Weld Connections to Bypass Control Valves",7112,"CCGTD1_IPS",TT_Task,"58336",-,-,-,100,TK_Complete,11/07/2019,22/07/2019,24/07/2019,31/08/2019,"10MAN1050 FS,10MAN1070 FS","10MAN1050,10MAN1070","10MAN1080 FS","10MAN1080",206,244,208,250,48,57,48,58,66,,"CCGT D1_Integrated Programme Schedule;M&E;Construction;M&E Construction;Steam Turbine (MA);(10MAN) ST Bypass System",2,1,0.0000026084,0.0028484232,0.0118006104,13,0.0,0.0003525394,0.0136986301,0.0030769231,0.0039375,0.007310705,0.0373230373,0.0291479821,0.0,0.1111649307
1.3.1.1.21.4-5,10MAN1085,"Close-out Insulation after Neutral Float Welds",7112,"CCGTD1_IPS",TT_Task,"58336",-,-,-,100,TK_Complete,07/09/2019,07/09/2019,18/09/2019,07/11/2019,"10MAN1080 FS","10MAN1080","10MAN110 FS","10MAN110",214,251,216,259,50,58,50,60,76,,"CCGT D1_Integrated Programme Schedule;M&E;Construction;M&E Construction;Steam Turbine (MA);(10MAN) ST Bypass System",1,1,0.0000019874,0.0024415056,0.012207528,11,0.0,0.0004671671,0.0068493151,0.0030769231,0.003,0.0062663185,0.0386100386,0.0246636771,0.0,0.1581334136
1.3.1.1.21.4-6,10MAN1000,"Attach Spring Supports for By Pass Valve",7112,"CCGTD1_IPS",TT_Task,"58336",-,-,-,100,TK_Complete,31/05/2019,10/06/2019,05/06/2019,21/06/2019,"10MA-1280 FS,SI1MA-4-45 FS,A1790 FS","10MA-1280,SI1MA-4-45,A1790","10MAN1010 FS","10MAN1010",200,238,201,240,46,55,46,56,60,,"CCGT D1_Integrated Programme Schedule;M&E;Construction;M&E Construction;Steam Turbine (MA);(10MAN) ST Bypass System",3,1,0.0000168962,0.0042726348,0.008138352,5,0.6,0.0004727046,0.0205479452,0.0030769231,0.0255052083,0.0109660574,0.0257400257,0.0112107623,0.6,0.1604024101
1.3.1.1.21.4-7,10MAN1010,"Install By Pass Valves",7112,"CCGTD1_IPS",TT_Task,"58336",-,-,-,100,TK_Complete,06/06/2019,21/06/2019,14/06/2019,31/08/2019,"10MAN1000 FS","10MAN1000","10MAN1020 FS,10MAN1060 FS,10MAN1090 FS,10MAN1050 FF","10MAN1020,10MAN1060,10MAN1090,10MAN1050",201,240,202,250,46,56,47,58,61,,"CCGT D1_Integrated Programme Schedule;M&E;Construction;M&E Construction;Steam Turbine (MA);(10MAN) ST Bypass System",1,4,0.0000160682,0.004069176,0.0083418108,8,0.0,0.0004839891,0.0068493151,0.0123076923,0.0242552083,0.0104438642,0.0263835264,0.0179372197,0.0,0.1650262111
1.3.1.1.21.4-8,10MAN1050,"NDE",7112,"CCGTD1_IPS",TT_Task,"58336",-,-,-,100,TK_Complete,30/04/2019,15/05/2019,29/05/2019,28/09/2019,"10MAN1020 SS,10MAN1010 FF","10MAN1020,10MAN1010","10MAN1070 FF,10MAN1075 FS","10MAN1070,10MAN1075",195,234,200,254,45,54,46,59,55,,"CCGT D1_Integrated Programme Schedule;M&E;Construction;M&E Construction;Steam Turbine (MA);(10MAN) ST Bypass System",2,2,0.0000092745,0.0032553408,0.0113936928,29,0.0,0.0003426364,0.0136986301,0.0061538462,0.014,0.0083550914,0.036036036,0.0650224215,0.0,0.1071071923
1.3.1.1.21.4-9,10MAN1070,"Line Inspection & Preparation for Neutral Float Welds",7112,"CCGTD1_IPS",TT_Task,"58336",-,-,-,100,TK_Complete,02/08/2019,10/08/2019,09/08/2019,24/08/2019,"10MAN1050 FF","10MAN1050","10MAN1080 FS,10MAN1075 FS","10MAN1080,10MAN1075",209,247,210,249,48,57,49,58,68,,"CCGT D1_Integrated Programme Schedule;M&E;Construction;M&E Construction;Steam Turbine (MA);(10MAN) ST Bypass System",1,2,0.0000026084,0.003051882,0.0115971516,7,0.2,0.0001835097,0.0068493151,0.0061538462,0.0039375,0.0078328982,0.0366795367,0.0156950673,0.2,0.0419053245
1.3.1.1.21.4-10,10MAN1080,"Hydro Test",7112,"CCGTD1_IPS",TT_Task,"58336",-,-,-,100,TK_Complete,21/08/2019,31/08/2019,02/09/2019,07/09/2019,"10MAN1070 FS,10MAN1075 FS","10MAN1070,10MAN1075","10MAN1085 FS","10MAN1085",212,250,213,251,49,58,49,58,70,,"CCGT D1_Integrated Programme Schedule;M&E;Construction;M&E Construction;Steam Turbine (MA);(10MAN) ST Bypass System",2,1,0.0000039334,0.0026449644,0.0120040692,12,1.0,0.0004564735,0.0136986301,0.0030769231,0.0059375,0.0067885117,0.037966538,0.0269058296,1.0,0.1537517496
1.3.1.1.21.4-11,10MAN110,"Pre-Commissioning/Flushing/Cleaning",7112,"CCGTD1_IPS",TT_Task,"58336",-,-,-,100,TK_Complete,18/09/2019,07/09/2019,30/09/2019,26/10/2019,"10MAN1090 FS,10MAN1085 FS,10MAN1060 FS","10MAN1090,10MAN1085,10MAN1060","TOP1130 FS,SC1070 FS","TOP1130,SC1070",216,251,217,258,50,58,50,60,77,,"CCGT D1_Integrated Programme Schedule;M&E;Construction;M&E Construction;Steam Turbine (MA);(10MAN) ST Bypass System",3,2,0.0000128097,0.0022380468,0.0136317396,12,0.0,0.0010119081,0.0205479452,0.0061538462,0.0193364583,0.0057441253,0.0431145431,0.0269058296,0.0,0.3813399951
1.3.1.1.21.5,58335,"(10MA-02) HP / IP / LP ST Emergency Stop Valves and Control Valves",7112,"CCGTD1_IPS",WBS,"58327",,,,100,Complete,04/04/2019,09/04/2019,11/09/2019,11/09/2019,,,,,192,229,215,251,44,53,50,58,,,"CCGT D1_Integrated Programme Schedule;M&E;Construction;M&E Construction;Steam Turbine (MA)"
1.3.1.1.21.5-1,10MA1460,"Pre-Commissioning",7112,"CCGTD1_IPS",TT_Task,"58335",-,-,-,100,TK_Complete,31/08/2019,02/09/2019,11/09/2019,11/09/2019,"10MA1450 FS","10MA1450","TOP1140 FS,TOP1900 FS","TOP1140,TOP1900",213,250,215,251,49,58,50,58,70,,"CCGT D1_Integrated Programme Schedule;M&E;Construction;M&E Construction;Steam Turbine (MA);(10MA-02) HP / IP / LP ST Emergency Stop Valves and Control Valves",1,2,0.0000085292,0.0024415056,0.0148524924,11,1.0,0.0004016373,0.0068493151,0.0061538462,0.012875,0.0062663185,0.046975547,0.0246636771,1.0,0.1312827006
1.3.1.1.21.5-2,10MA1400,"Install & Align Main Stop & Control Valves",7112,"CCGTD1_IPS",TT_Task,"58335",-,-,-,100,TK_Complete,04/04/2019,09/04/2019,24/04/2019,17/06/2019,"10MAA-1020 FS,A1660 FS,KD_C04 FS","10MAA-1020,A1660,KD_C04","10MA1410 FS","10MA1410",192,229,195,239,44,53,45,55,52,,"CCGT D1_Integrated Programme Schedule;M&E;Construction;M&E Construction;Steam Turbine (MA);(10MA-02) HP / IP / LP ST Emergency Stop Valves and Control Valves",3,1,0.000019377,0.0034587996,0.0134282808,20,0.0,0.0001959436,0.0205479452,0.0030769231,0.02925,0.0088772846,0.0424710425,0.0448430493,0.0,0.0470001054
1.3.1.1.21.5-3,10MA1430,"Installation of all Actuators for MS, RH, LP",7112,"CCGTD1_IPS",TT_Task,"58335",-,-,-,100,TK_Complete,18/06/2019,11/06/2019,15/07/2019,22/06/2019,"10MA1420 FS","10MA1420","10MA1450 FS","10MA1450",202,238,206,240,47,55,48,56,63,,"CCGT D1_Integrated Programme Schedule;M&E;Construction;M&E Construction;Steam Turbine (MA);(10MA-02) HP / IP / LP ST Emergency Stop Valves and Control Valves",1,1,0.000012918,0.0028484232,0.0140386572,27,1.0,0.0003303106,0.0068493151,0.0030769231,0.0195,0.007310705,0.0444015444,0.0605381166,1.0,0.1020567301
1.3.1.1.21.5-4,10MA1450,"E&IC Installation ST Stop and Control Valves",7112,"CCGTD1_IPS",TT_Task,"58335",-,-,-,100,TK_Complete,26/06/2019,21/06/2019,05/08/2019,31/08/2019,"10MA1430 FS,SI1C--4-25 FS,EDS.1080 FS","10MA1430,SI1C--4-25,EDS.1080","10MA1460 FS","10MA1460",204,240,209,250,47,56,48,58,64,,"CCGT D1_Integrated Programme Schedule;M&E;Construction;M&E Construction;Steam Turbine (MA);(10MA-02) HP / IP / LP ST Emergency Stop Valves and Control Valves",3,1,0.0000110134,0.0026449644,0.0146490336,40,0.0,0.0003762395,0.0205479452,0.0030769231,0.016625,0.0067885117,0.0463320463,0.0896860987,0.0,0.1208760167
1.3.1.1.21.5-5,10MA1410,"Install & Align RH Stop & Control Valves",7112,"CCGTD1_IPS",TT_Task,"58335",-,-,-,100,TK_Complete,13/04/2019,13/04/2019,04/05/2019,21/06/2019,"10MA1400 FS","10MA1400","10MA1420 FS","10MA1420",193,230,196,240,45,53,45,56,54,,"CCGT D1_Integrated Programme Schedule;M&E;Construction;M&E Construction;Steam Turbine (MA);(10MA-02) HP / IP / LP ST Emergency Stop Valves and Control Valves",1,1,0.0000173068,0.0032553408,0.0136317396,21,0.0,0.0002480212,0.0068493151,0.0030769231,0.026125,0.0083550914,0.0431145431,0.0470852018,0.0,0.0683388184
1.3.1.1.21.5-6,10MA1420,"Install & Align Steam Supply Valves & Bolt",7112,"CCGTD1_IPS",TT_Task,"58335",-,-,-,100,TK_Complete,10/06/2019,15/06/2019,28/06/2019,22/06/2019,"10MA1410 FS","10MA1410","10MA1430 FS","10MA1430",201,239,204,240,47,55,47,56,62,,"CCGT D1_Integrated Programme Schedule;M&E;Construction;M&E Construction;Steam Turbine (MA);(10MA-02) HP / IP / LP ST Emergency Stop Valves and Control Valves",1,1,0.0000151538,0.003051882,0.0138351984,18,1.0,0.0002924255,0.0068493151,0.0030769231,0.022875,0.0078328982,0.0437580438,0.0403587444,1.0,0.0865333781
1.3.1.1.21.6,58334,"(10MAX) ST Hydraulic System",7112,"CCGTD1_IPS",WBS,"58327",,,,100,Complete,31/10/2018,03/10/2018,08/10/2019,09/11/2019,,,,,170,202,218,260,39,47,51,60,,,"CCGT D1_Integrated Programme Schedule;M&E;Construction;M&E Construction;Steam Turbine (MA)"
1.3.1.1.21.6-1,10MAX20,"Install Large Bore Pipe/Valves/Supports",7112,"CCGTD1_IPS",TT_Task,"58334",-,-,-,100,TK_Complete,08/02/2019,15/12/2018,15/03/2019,25/04/2019,"10MAA-1060 FS,10MAX10 FS,SI1--P4H40 FS,A1660 FS,PMS14.1020 FS,SI1MAX4-40 FS,SI1--P4A40 FS","10MAA-1060,10MAX10,SI1--P4H40,A1660,PMS14.1020,SI1MAX4-40,SI1--P4A40","10MAX40 SS,10MAX50 FS,10MAX30 FS","10MAX40,10MAX50,10MAX30",184,213,189,231,43,49,44,54,46,,"CCGT D1_Integrated Programme Schedule;M&E;Construction;M&E Construction;Steam Turbine (MA);(10MAX) ST Hydraulic System",7,3,0.0000399244,0.0042726348,0.0168870804,35,0.0,0.0004171229,0.0479452055,0.0092307692,0.0602666667,0.0109660574,0.0534105534,0.0784753363,0.0,0.1376279206
1.3.1.1.21.6-2,10MAX50,"EC+I",7112,"CCGTD1_IPS",TT_Task,"58334",-,-,-,100,TK_Complete,30/04/2019,07/05/2019,08/06/2019,21/09/2019,"10MAX20 FS","10MAX20","10MAX90 FF","10MAX90",195,233,201,253,45,54,47,59,55,,"CCGT D1_Integrated Programme Schedule;M&E;Construction;M&E Construction;Steam Turbine (MA);(10MAX) ST Hydraulic System",1,1,0.0000134673,0.0026449644,0.0170905392,39,0.0,0.0001996196,0.0068493151,0.0030769231,0.0203291667,0.0067885117,0.0540540541,0.0874439462,0.0,0.0485063516
1.3.1.1.21.6-3,10MAX100,"Flush ST Hydraulic Piping",7112,"CCGTD1_IPS",TT_Task,"58334",-,-,-,100,TK_Complete,09/09/2019,09/09/2019,16/09/2019,14/09/2019,"10MAX70 FS","10MAX70","10MAX80 FF,10MAX110 FS","10MAX80,10MAX110",214,251,215,252,50,58,50,58,76,,"CCGT D1_Integrated Programme Schedule;M&E;Construction;M&E Construction;Steam Turbine (MA);(10MAX) ST Hydraulic System",1,2,0.0000094401,0.003051882,0.0179043744,7,1.0,0.0004429925,0.0068493151,0.0061538462,0.01425,0.0078328982,0.0566280566,0.0156950673,1.0,0.1482279455
1.3.1.1.21.6-4,10MAX110,"Reconfigure ST Hydraulic Piping after Flushing]",7112,"CCGTD1_IPS",TT_Task,"58334",-,-,-,100,TK_Complete,30/09/2019,05/10/2019,08/10/2019,12/10/2019,"10MAX100 FS","10MAX100","10MAX90 FS","10MAX90",217,255,218,256,50,59,51,59,77,,"CCGT D1_Integrated Programme Schedule;M&E;Construction;M&E Construction;Steam Turbine (MA);(10MAX) ST Hydraulic System",1,1,0.0000013456,0.0026449644,0.0181078332,8,1.0,0.0001974349,0.0068493151,0.0030769231,0.00203125,0.0067885117,0.0572715573,0.0179372197,1.0,0.0476111472
1.3.1.1.21.6-5,10MAX10,"Install Equipment/Skids/Pumps",7112,"CCGTD1_IPS",TT_Task,"58334",-,-,-,100,TK_Complete,31/10/2018,03/10/2018,05/11/2018,05/10/2018,"KD_C04 FS,SI1MAX4-40 FS,KD_B06 FS,Sub-GTST-180 FS","KD_C04,SI1MAX4-40,KD_B06,Sub-GTST-180","10MAX20 FS","10MAX20",170,202,170,203,39,47,39,47,38,,"CCGT D1_Integrated Programme Schedule;M&E;Construction;M&E Construction;Steam Turbine (MA);(10MAX) ST Hydraulic System",4,1,0.0000083967,0.0044760936,0.0036622584,5,1.0,0.000097289,0.0273972603,0.0030769231,0.012675,0.0114882507,0.0115830116,0.0112107623,1.0,0.0065765783
1.3.1.1.21.6-6,10MAX30,"Install Small Bore Pipe/Valves/Supports",7112,"CCGTD1_IPS",TT_Task,"58334",-,-,-,100,TK_Complete,08/04/2019,08/04/2019,17/05/2019,04/09/2019,"SI1--P4A40 FS,SI1--P4H40 FS,10MAX20 FS","SI1--P4A40,SI1--P4H40,10MAX20","10MAX40 FF","10MAX40",192,229,198,250,44,53,46,58,53,,"CCGT D1_Integrated Programme Schedule;M&E;Construction;M&E Construction;Steam Turbine (MA);(10MAX) ST Hydraulic System",3,1,0.0000003726,0.0038657172,0.0170905392,39,0.0,0.000201612,0.0205479452,0.0030769231,0.0005625,0.009921671,0.0540540541,0.0874439462,0.0,0.0493227072
1.3.1.1.21.6-7,10MAX40,"NDE",7112,"CCGTD1_IPS",TT_Task,"58334",-,-,-,100,TK_Complete,08/04/2019,17/04/2019,17/05/2019,16/09/2019,"10MAX20 SS,10MAX30 FF","10MAX20,10MAX30","10MAX60 FF","10MAX60",192,230,198,252,44,53,46,58,53,,"CCGT D1_Integrated Programme Schedule;M&E;Construction;M&E Construction;Steam Turbine (MA);(10MAX) ST Hydraulic System",2,1,0.0000181349,0.0036622584,0.017293998,39,0.0,0.0003713488,0.0136986301,0.0030769231,0.027375,0.0093994778,0.0546975547,0.0874439462,0.0,0.1188720604
1.3.1.1.21.6-8,10MAX60,"Line Inspection",7112,"CCGTD1_IPS",TT_Task,"58334",-,-,-,100,TK_Complete,31/07/2019,26/08/2019,05/08/2019,29/08/2019,"10MAX40 FF","10MAX40","10MAX70 FS","10MAX70",209,249,209,249,48,58,48,58,67,,"CCGT D1_Integrated Programme Schedule;M&E;Construction;M&E Construction;Steam Turbine (MA);(10MAX) ST Hydraulic System",1,1,0.0000153194,0.0034587996,0.0174974568,5,1.0,0.0003976496,0.0068493151,0.0030769231,0.023125,0.0088772846,0.0553410553,0.0112107623,1.0,0.1296487711
1.3.1.1.21.6-9,10MAX70,"Hydro Test",7112,"CCGTD1_IPS",TT_Task,"58334",-,-,-,100,TK_Complete,04/09/2019,04/09/2019,07/09/2019,07/09/2019,"10MAX60 FS","10MAX60","10MAX100 FS","10MAX100",214,250,214,251,49,58,50,58,75,,"CCGT D1_Integrated Programme Schedule;M&E;Construction;M&E Construction;Steam Turbine (MA);(10MAX) ST Hydraulic System",1,1,0.0000124212,0.0032553408,0.0177009156,3,1.0,0.0004203987,0.0068493151,0.0030769231,0.01875,0.0083550914,0.055984556,0.0067264574,1.0,0.1389701706
1.3.1.1.21.6-10,10MAX80,"Painting/Insulation",7112,"CCGTD1_IPS",TT_Task,"58334",-,-,-,100,TK_Complete,11/06/2019,07/05/2019,29/06/2019,09/11/2019,"10MAX100 FF","10MAX100","10MAX90 FF","10MAX90",201,233,204,260,47,54,47,60,62,,"CCGT D1_Integrated Programme Schedule;M&E;Construction;M&E Construction;Steam Turbine (MA);(10MAX) ST Hydraulic System",1,1,0.0000013456,0.0026449644,0.0181078332,18,0.0,0.00034268,0.0068493151,0.0030769231,0.00203125,0.0067885117,0.0572715573,0.0403587444,0.0,0.1071250813
1.3.1.1.21.6-11,10MAX90,"Pre-Commissioning/Flushing/Cleaning",7112,"CCGTD1_IPS",TT_Task,"58334",-,-,-,100,TK_Complete,24/09/2019,24/09/2019,28/09/2019,09/11/2019,"10MAX80 FF,10MAX110 FS,10MAX50 FF","10MAX80,10MAX110,10MAX50","TOP1180 FS,SC1070 FS","TOP1180,SC1070",216,253,217,260,50,59,50,60,77,,"CCGT D1_Integrated Programme Schedule;M&E;Construction;M&E Construction;Steam Turbine (MA);(10MAX) ST Hydraulic System",3,2,0.0000139642,0.0024415056,0.0187182096,4,0.0,0.0007075088,0.0205479452,0.0061538462,0.0210791667,0.0062663185,0.0592020592,0.0089686099,0.0,0.2566129968
1.3.1.1.21.7,58333,"(10MAV) Lube and Lifting Oil System",7112,"CCGTD1_IPS",WBS,"58327",,,,100,Complete,29/09/2018,14/09/2018,12/09/2019,06/09/2019,,,,,165,200,215,251,38,46,50,58,,,"CCGT D1_Integrated Programme Schedule;M&E;Construction;M&E Construction;Steam Turbine (MA)"
1.3.1.1.21.7-1,10MAV10,"Install Equipment/Skids/Pumps",7112,"CCGTD1_IPS",TT_Task,"58333",-,-,-,100,TK_Complete,29/09/2018,14/09/2018,11/10/2018,30/09/2018,"KD_B06 FS,KD_C04 FS,10MAV1001 FS,SI1MAV4-40 FS","KD_B06,KD_C04,10MAV1001,SI1MAV4-40","10MAV20 FS,10MAV50 FS","10MAV20,10MAV50",165,200,167,202,38,46,39,47,37,,"CCGT D1_Integrated Programme Schedule;M&E;Construction;M&E Construction;Steam Turbine (MA);(10MAV) Lube and Lifting Oil System",4,2,0.0000071311,0.0059003052,0.002034588,12,0.2,0.0002053327,0.0273972603,0.0061538462,0.0107645833,0.0151436031,0.0064350064,0.0269058296,0.2,0.050847286
1.3.1.1.21.7-2,10MAV50,"EC+I",7112,"CCGTD1_IPS",TT_Task,"58333",-,-,-,100,TK_Complete,05/06/2019,21/05/2019,02/07/2019,06/09/2019,"EDS.1080 FS,SI-BZK4-25 FS,10MAV30 FS,10MAV10 FS,SI1C--4-25 FS,SI-BZK4-58 FS","EDS.1080,SI-BZK4-25,10MAV30,10MAV10,SI1C--4-25,SI-BZK4-58","10MAV90 FS","10MAV90",201,235,204,251,46,54,47,58,61,,"CCGT D1_Integrated Programme Schedule;M&E;Construction;M&E Construction;Steam Turbine (MA);(10MAV) Lube and Lifting Oil System",6,1,0.0000037691,0.0026449644,0.0079348932,27,0.0,0.0002301268,0.0410958904,0.0030769231,0.0056895833,0.0067885117,0.0250965251,0.0605381166,0.0,0.0610066029
1.3.1.1.21.7-3,10MAV90,"Pre-Commissioning",7112,"CCGTD1_IPS",TT_Task,"58333",-,-,-,100,TK_Complete,31/08/2019,20/08/2019,12/09/2019,28/08/2019,"10MAV80 FF,10MAV50 FS,10MA-1630 FF,10MAV40 FS","10MAV80,10MAV50,10MA-1630,10MAV40","TOP1160 FS,SC1070 FS","TOP1160,SC1070",213,248,215,249,49,58,50,58,70,,"CCGT D1_Integrated Programme Schedule;M&E;Construction;M&E Construction;Steam Turbine (MA);(10MAV) Lube and Lifting Oil System",4,2,0.0000183916,0.0024415056,0.0187182096,12,1.0,0.000908234,0.0273972603,0.0061538462,0.0277625,0.0062663185,0.0592020592,0.0269058296,1.0,0.3388597438
1.3.1.1.21.7-4,10MAV20,"Install Large Bore Pipe/Valves/Supports",7112,"CCGTD1_IPS",TT_Task,"58333",-,-,-,100,TK_Complete,12/01/2019,07/01/2019,08/03/2019,30/04/2019,"10MAV10 FS,SI1--P4A40 FS,SI1--P4H40 FS,10MA-1280 FS","10MAV10,SI1--P4A40,SI1--P4H40,10MA-1280","10MAV40 SS,10MAV30 SS","10MAV40,10MAV30",180,216,188,232,42,50,43,54,43,,"CCGT D1_Integrated Programme Schedule;M&E;Construction;M&E Construction;Steam Turbine (MA);(10MAV) Lube and Lifting Oil System",4,2,0.0000191493,0.0056968464,0.0067141404,55,0.0,0.000327667,0.0273972603,0.0061538462,0.02890625,0.0146214099,0.0212355212,0.1233183857,0.0,0.100973505
1.3.1.1.21.7-5,10MAV40,"NDE",7112,"CCGTD1_IPS",TT_Task,"58333",-,-,-,100,TK_Complete,01/03/2019,01/03/2019,10/04/2019,28/05/2019,"10MAV20 SS,10MAV30 FF","10MAV20,10MAV30","10MAV60 FS,10MAV90 FS","10MAV60,10MAV90",187,224,193,236,43,52,45,55,48,,"CCGT D1_Integrated Programme Schedule;M&E;Construction;M&E Construction;Steam Turbine (MA);(10MAV) Lube and Lifting Oil System",2,2,0.000007432,0.00508647,0.007121058,40,0.0,0.0003207227,0.0136986301,0.0061538462,0.01121875,0.0130548303,0.0225225225,0.0896860987,0.0,0.0981281233
1.3.1.1.21.7-6,10MAV75,"Lube Oil System Ready for Flushing",7112,"CCGTD1_IPS",TT_FinMile,"58333",-,-,-,100,TK_Complete,06/06/2019,27/05/2019,06/06/2019,27/05/2019,"10MAV70 FS","10MAV70","10MA-1610 FS","10MA-1610",201,236,201,236,46,55,46,55,61,,"CCGT D1_Integrated Programme Schedule;M&E;Construction;M&E Construction;Steam Turbine (MA);(10MAV) Lube and Lifting Oil System",1,1,0.0000081152,0.0042726348,0.0077314344,0,1.0,0.0000812387,0.0068493151,0.0030769231,0.01225,0.0109660574,0.0244530245,0.0,1.0,0.0
1.3.1.1.21.7-7,10MAV80,"Painting/Insulation",7112,"CCGTD1_IPS",TT_Task,"58333",-,-,-,100,TK_Complete,08/06/2019,08/05/2019,18/06/2019,28/08/2019,"10MAV70 FS","10MAV70","10MAV90 FF","10MAV90",201,233,202,249,47,54,47,58,62,,"CCGT D1_Integrated Programme Schedule;M&E;Construction;M&E Construction;Steam Turbine (MA);(10MAV) Lube and Lifting Oil System",1,1,0.0000010765,0.0026449644,0.0077314344,10,0.0,0.0002660564,0.0068493151,0.0030769231,0.001625,0.0067885117,0.0244530245,0.0224215247,0.0,0.0757286751
1.3.1.1.21.7-8,10MAV30,"Install Small Bore Pipe/Valves/Supports",7112,"CCGTD1_IPS",TT_Task,"58333",-,-,-,100,TK_Complete,08/02/2019,08/02/2019,01/04/2019,23/05/2019,"SI1--P4A40 FS,10MAV20 SS,SI1--P4H40 FS","SI1--P4A40,10MAV20,SI1--P4H40","10MAV70 FS,10MAV50 FS,10MAV40 FF","10MAV70,10MAV50,10MAV40",184,221,191,235,43,51,44,55,46,,"CCGT D1_Integrated Programme Schedule;M&E;Construction;M&E Construction;Steam Turbine (MA);(10MAV) Lube and Lifting Oil System",3,3,0.0000122763,0.0054933876,0.0069175992,52,0.0,0.0002419446,0.0205479452,0.0092307692,0.01853125,0.0140992167,0.0218790219,0.1165919283,0.0,0.0658489302
1.3.1.1.21.7-9,10MAV60,"Line Inspection",7112,"CCGTD1_IPS",TT_Task,"58333",-,-,-,100,TK_Complete,31/05/2019,12/06/2019,04/06/2019,15/06/2019,"10MAV40 FS","10MAV40","10MAV70 FS","10MAV70",200,238,200,239,46,55,46,55,60,,"CCGT D1_Integrated Programme Schedule;M&E;Construction;M&E Construction;Steam Turbine (MA);(10MAV) Lube and Lifting Oil System",1,1,0.0000004554,0.0048830112,0.0073245168,4,1.0,0.0001494894,0.0068493151,0.0030769231,0.0006875,0.0125326371,0.0231660232,0.0089686099,1.0,0.0279656042
1.3.1.1.21.7-10,10MAV70,"Hydro Test",7112,"CCGTD1_IPS",TT_Task,"58333",-,-,-,100,TK_Complete,29/06/2019,20/07/2019,02/07/2019,19/08/2019,"10MAV30 FS,10MAV60 FS","10MAV30,10MAV60","10MAV75 FS,10MAV80 FS","10MAV75,10MAV80",204,244,204,248,47,56,47,57,65,,"CCGT D1_Integrated Programme Schedule;M&E;Construction;M&E Construction;Steam Turbine (MA);(10MAV) Lube and Lifting Oil System",2,2,0.0000113861,0.0046795524,0.0075279756,3,0.0,0.0002172039,0.0136986301,0.0061538462,0.0171875,0.0120104439,0.0238095238,0.0067264574,0.0,0.0557114708
1.3.1.1.21.7-11,10MAV1001,"Set Lube Oil Module into Position - Skid",7112,"CCGTD1_IPS",TT_Task,"58333",-,-,-,100,TK_Complete,29/09/2018,14/09/2018,05/10/2018,30/09/2018,"SI1MAV4-40 FS,KD_C04 FS","SI1MAV4-40,KD_C04","10MAV10 FS","10MAV10",165,200,166,202,38,46,38,47,37,,"CCGT D1_Integrated Programme Schedule;M&E;Construction;M&E Construction;Steam Turbine (MA);(10MAV) Lube and Lifting Oil System",2,1,0.0,0.006103764,0.0014242116,6,0.0,0.0000968238,0.0136986301,0.0030769231,0.0,0.0156657963,0.0045045045,0.0134529148,0.0,0.0063859626
1.3.1.1.21.8,58328,"(10MA-01) HP / IP / LP Turbine 10MAA/MAB/MAC",7112,"CCGTD1_IPS",WBS,"58327",,,,100,Complete,26/07/2018,16/07/2018,20/09/2019,16/11/2019,,,,,156,191,216,261,36,44,50,60,,,"CCGT D1_Integrated Programme Schedule;M&E;Construction;M&E Construction;Steam Turbine (MA)"
1.3.1.1.21.8.1,58332,"(10MA-01) HP/IP/LP Turbine Final Installation/Alignment",7112,"CCGTD1_IPS",WBS,"58328",,,,100,Complete,26/01/2019,09/01/2019,17/09/2019,16/11/2019,,,,,182,216,215,261,42,50,50,60,,,"CCGT D1_Integrated Programme Schedule;M&E;Construction;M&E Construction;Steam Turbine (MA);(10MA-01) HP / IP / LP Turbine 10MAA/MAB/MAC"
1.3.1.1.21.8.1-1,10MA-1660,"E & IC Installation",7112,"CCGTD1_IPS",TT_Task,"58332",-,-,-,100,TK_Complete,03/06/2019,13/05/2019,13/07/2019,07/09/2019,"EDS.1080 FS,10MAA-1060 FS,SI1C--4-25 FS,CP1BZP7F15 FS","EDS.1080,10MAA-1060,SI1C--4-25,CP1BZP7F15","TOP1110 FS,TOP1100 FS,10MA-1670 FS","TOP1110,TOP1100,10MA-1670",200,234,206,251,46,54,48,58,61,,"CCGT D1_Integrated Programme Schedule;M&E;Construction;M&E Construction;Steam Turbine (MA);(10MA-01) HP / IP / LP Turbine 10MAA/MAB/MAC;(10MA-01) HP/IP/LP Turbine Final Installation/Alignment",4,3,0.0000153006,0.0028484232,0.0126144456,40,0.0,0.0002937711,0.0273972603,0.0092307692,0.0230965278,0.007310705,0.0398970399,0.0896860987,0.0,0.0870847458
1.3.1.1.21.8.1-2,10MA-1630,"Re-assembly after Lube Oil Flush",7112,"CCGTD1_IPS",TT_Task,"58332",-,-,-,100,TK_Complete,17/06/2019,22/06/2019,26/06/2019,06/07/2019,"10MA-1620 FS","10MA-1620","10MAV90 FF,10MA-1650 FS","10MAV90,10MA-1650",202,240,204,242,47,56,47,56,63,,"CCGT D1_Integrated Programme Schedule;M&E;Construction;M&E Construction;Steam Turbine (MA);(10MA-01) HP / IP / LP Turbine 10MAA/MAB/MAC;(10MA-01) HP/IP/LP Turbine Final Installation/Alignment",1,2,0.0000239315,0.0036622584,0.017293998,9,0.2,0.0004234954,0.0068493151,0.0061538462,0.036125,0.0093994778,0.0546975547,0.0201793722,0.2,0.1402390427
1.3.1.1.21.8.1-3,10MA-1650,"Closing of Bearing Pedestals",7112,"CCGTD1_IPS",TT_Task,"58332",-,-,-,100,TK_Complete,09/07/2019,13/07/2019,19/07/2019,27/08/2019,"10MA-1630 FS","10MA-1630","TOP1110 FS,TOP1100 FS,10MA-1670 FS","TOP1110,TOP1100,10MA-1670",205,243,207,249,48,56,48,58,65,,"CCGT D1_Integrated Programme Schedule;M&E;Construction;M&E Construction;Steam Turbine (MA);(10MA-01) HP / IP / LP Turbine 10MAA/MAB/MAC;(10MA-01) HP/IP/LP Turbine Final Installation/Alignment",1,3,0.0000113585,0.0028484232,0.0174974568,10,0.0,0.0002478155,0.0068493151,0.0092307692,0.0171458333,0.007310705,0.0553410553,0.0224215247,0.0,0.0682545348
1.3.1.1.21.8.1-4,10MA-1410,"Perform Preliminary Alignment of Shaft Assembly in Operating Position",7112,"CCGTD1_IPS",TT_Task,"58332",-,-,-,100,TK_Complete,28/01/2019,09/01/2019,31/01/2019,12/01/2019,"10MAC-1250 FS","10MAC-1250","10MA-1420 FS","10MA-1420",182,216,183,217,42,50,42,50,46,,"CCGT D1_Integrated Programme Schedule;M&E;Construction;M&E Construction;Steam Turbine (MA);(10MA-01) HP / IP / LP Turbine 10MAA/MAB/MAC;(10MA-01) HP/IP/LP Turbine Final Installation/Alignment",1,1,0.0002179295,0.0303153611,0.0113936928,3,1.0,0.0003191904,0.0068493151,0.0030769231,0.32896875,0.0778067885,0.036036036,0.0067264574,1.0,0.0975002563
1.3.1.1.21.8.1-5,10MA-1420,"Alignment - Generator to Steam Turbine/Gas Turbine to Generator",7112,"CCGTD1_IPS",TT_Task,"58332",-,-,-,100,TK_Complete,01/02/2019,14/01/2019,08/02/2019,12/04/2019,"10MA-1410 FS","10MA-1410","10MA-1430 FS","10MA-1430",183,217,184,230,42,50,43,53,46,,"CCGT D1_Integrated Programme Schedule;M&E;Construction;M&E Construction;Steam Turbine (MA);(10MA-01) HP / IP / LP Turbine 10MAA/MAB/MAC;(10MA-01) HP/IP/LP Turbine Final Installation/Alignment",1,1,0.0002217386,0.0301119023,0.0115971516,7,0.0,0.0003444728,0.0068493151,0.0030769231,0.33471875,0.0772845953,0.0366795367,0.0156950673,0.0,0.1078596696
1.3.1.1.21.8.1-6,10MA-1430,"Assembly of Shifting Clutch",7112,"CCGTD1_IPS",TT_Task,"58332",-,-,-,100,TK_Complete,26/01/2019,30/01/2019,30/01/2019,01/02/2019,"10MA-1420 FS","10MA-1420","10MKA1170 SS,10MA-1440 FS,10MAC-1320 FS","10MKA1170,10MA-1440,10MAC-1320",182,219,183,220,42,51,42,51,44,,"CCGT D1_Integrated Programme Schedule;M&E;Construction;M&E Construction;Steam Turbine (MA);(10MA-01) HP / IP / LP Turbine 10MAA/MAB/MAC;(10MA-01) HP/IP/LP Turbine Final Installation/Alignment",1,3,0.000225465,0.0299084435,0.0118006104,4,1.0,0.000374187,0.0068493151,0.0092307692,0.34034375,0.0767624021,0.0373230373,0.0089686099,1.0,0.1200350219
1.3.1.1.21.8.1-7,10MA-1440,"Common Coupling Alignment at Steam Turbine/Generator/Gas Turbine",7112,"CCGTD1_IPS",TT_Task,"58332",-,-,-,100,TK_Complete,30/01/2019,11/02/2019,08/02/2019,03/04/2019,"10MA-1430 FS","10MA-1430","10MKA1170 SS,10LBA10-65 FS,SC1050 FS,10MA-1450 FS","10MKA1170,10LBA10-65,SC1050,10MA-1450",183,221,184,228,42,51,43,53,46,,"CCGT D1_Integrated Programme Schedule;M&E;Construction;M&E Construction;Steam Turbine (MA);(10MA-01) HP / IP / LP Turbine 10MAA/MAB/MAC;(10MA-01) HP/IP/LP Turbine Final Installation/Alignment",1,4,0.0000611329,0.0290946083,0.0120040692,9,0.0,0.0001354817,0.0068493151,0.0123076923,0.09228125,0.0746736292,0.037966538,0.0201793722,0.0,0.0222259725
1.3.1.1.21.8.1-8,10MA-1450,"Draw Together HP/LP Coupling, Ream & Hone Coupling Holes, Finish Grind Coupling Holes",7112,"CCGTD1_IPS",TT_Task,"58332",-,-,-,100,TK_Complete,08/02/2019,18/02/2019,14/02/2019,02/03/2019,"10MA-1440 FS","10MA-1440","10MA-1460 FS","10MA-1460",184,222,185,224,43,51,43,52,46,,"CCGT D1_Integrated Programme Schedule;M&E;Construction;M&E Construction;Steam Turbine (MA);(10MA-01) HP / IP / LP Turbine 10MAA/MAB/MAC;(10MA-01) HP/IP/LP Turbine Final Installation/Alignment",1,1,0.0000467864,0.0069175992,0.012207528,6,0.6,0.0000932157,0.0068493151,0.0030769231,0.070625,0.0177545692,0.0386100386,0.0134529148,0.6,0.004907558
1.3.1.1.21.8.1-9,10MA-1460,"Couple HP & LP1 Shafts Checking Radial Run-Out of Coupling Flanges",7112,"CCGTD1_IPS",TT_Task,"58332",-,-,-,100,TK_Complete,14/02/2019,02/03/2019,16/02/2019,07/03/2019,"10MA-1450 FS","10MA-1450","10MA-1470 FS","10MA-1470",185,224,185,224,43,52,43,52,47,,"CCGT D1_Integrated Programme Schedule;M&E;Construction;M&E Construction;Steam Turbine (MA);(10MA-01) HP / IP / LP Turbine 10MAA/MAB/MAC;(10MA-01) HP/IP/LP Turbine Final Installation/Alignment",1,1,0.0000456685,0.0067141404,0.0124109868,2,1.0,0.0001602575,0.0068493151,0.0030769231,0.0689375,0.017232376,0.0392535393,0.0044843049,1.0,0.0323777762
1.3.1.1.21.8.1-10,10MA-1470,"Check The Radial Clearance of the LP1 Inner Casing by Means of Adjusting Screws",7112,"CCGTD1_IPS",TT_Task,"58332",-,-,-,100,TK_Complete,30/01/2019,30/01/2019,01/02/2019,04/04/2019,"10MA-1460 FS","10MA-1460","10MA-1480 FS","10MA-1480",183,219,183,228,42,51,42,53,46,,"CCGT D1_Integrated Programme Schedule;M&E;Construction;M&E Construction;Steam Turbine (MA);(10MA-01) HP / IP / LP Turbine 10MAA/MAB/MAC;(10MA-01) HP/IP/LP Turbine Final Installation/Alignment",1,1,0.0000444678,0.0065106816,0.0126144456,2,0.0,0.0002175696,0.0068493151,0.0030769231,0.067125,0.0167101828,0.0398970399,0.0044843049,0.0,0.0558613111
1.3.1.1.21.8.1-11,10MA-1480,"Check Radial Run-Out of FInal Stage of Outer Shell of LP Casing",7112,"CCGTD1_IPS",TT_Task,"58332",-,-,-,100,TK_Complete,01/02/2019,09/03/2019,02/02/2019,11/03/2019,"10MA-1470 FS","10MA-1470","10MA-1490 FS","10MA-1490",183,225,183,225,42,52,42,52,46,,"CCGT D1_Integrated Programme Schedule;M&E;Construction;M&E Construction;Steam Turbine (MA);(10MA-01) HP / IP / LP Turbine 10MAA/MAB/MAC;(10MA-01) HP/IP/LP Turbine Final Installation/Alignment",1,1,0.0000431843,0.0063072228,0.0128179044,1,1.0,0.0002663982,0.0068493151,0.0030769231,0.0651875,0.0161879896,0.0405405405,0.0022421525,1.0,0.0758687605
1.3.1.1.21.8.1-12,10MA-1605,"Power Available for Oil Flushing",7112,"CCGTD1_IPS",TT_FinMile,"58332",-,-,-,100,TK_Complete,30/04/2019,30/04/2019,30/04/2019,30/04/2019,"","","10MA-1610 FS,10MA-1620 FS","10MA-1610,10MA-1620",195,232,195,232,45,54,45,54,55,,"CCGT D1_Integrated Programme Schedule;M&E;Construction;M&E Construction;Steam Turbine (MA);(10MA-01) HP / IP / LP Turbine 10MAA/MAB/MAC;(10MA-01) HP/IP/LP Turbine Final Installation/Alignment",0,2,0.0,0.0042726348,0.0,0,1.0,0.0000812387,0.0,0.0061538462,0.0,0.0109660574,0.0,0.0,1.0,0.0
1.3.1.1.21.8.1-13,10MA-1490,"Correct the Alignment of LP Inner Casing if Necessary & Mount Fitted Keys for Casing Support",7112,"CCGTD1_IPS",TT_Task,"58332",-,-,-,100,TK_Complete,01/02/2019,01/02/2019,09/02/2019,09/04/2019,"10MA-1480 FS","10MA-1480","10MA-1500 FS","10MA-1500",183,220,184,229,42,51,43,53,46,,"CCGT D1_Integrated Programme Schedule;M&E;Construction;M&E Construction;Steam Turbine (MA);(10MA-01) HP / IP / LP Turbine 10MAA/MAB/MAC;(10MA-01) HP/IP/LP Turbine Final Installation/Alignment",1,1,0.0000418179,0.006103764,0.0130213632,8,0.0,0.0003080344,0.0068493151,0.0030769231,0.063125,0.0156657963,0.0411840412,0.0179372197,0.0,0.0929291171
1.3.1.1.21.8.1-14,10MA-1500,"Align LP1 Bottom Half Shaft Seal Casing to Coupled Shaft Assembly",7112,"CCGTD1_IPS",TT_Task,"58332",-,-,-,100,TK_Complete,09/02/2019,20/03/2019,12/02/2019,11/04/2019,"10MA-1490 FS","10MA-1490","10MA-1510 FS,10MA-1520 FS","10MA-1510,10MA-1520",184,226,184,229,43,52,43,53,47,,"CCGT D1_Integrated Programme Schedule;M&E;Construction;M&E Construction;Steam Turbine (MA);(10MA-01) HP / IP / LP Turbine 10MAA/MAB/MAC;(10MA-01) HP/IP/LP Turbine Final Installation/Alignment",1,2,0.0000403688,0.0059003052,0.013224822,3,0.0,0.0003435558,0.0068493151,0.0061538462,0.0609375,0.0151436031,0.0418275418,0.0067264574,0.0,0.1074839353
1.3.1.1.21.8.1-15,10MA-1510,"Check Radial Clearance of LP1 Shaft Seal",7112,"CCGTD1_IPS",TT_Task,"58332",-,-,-,100,TK_Complete,30/04/2019,10/04/2019,30/04/2019,24/04/2019,"10MA-1500 FS","10MA-1500","10MA-1520 FS,10MA-1530 FS","10MA-1520,10MA-1530",195,229,195,231,45,53,45,54,55,,"CCGT D1_Integrated Programme Schedule;M&E;Construction;M&E Construction;Steam Turbine (MA);(10MA-01) HP / IP / LP Turbine 10MAA/MAB/MAC;(10MA-01) HP/IP/LP Turbine Final Installation/Alignment",1,2,0.0000180521,0.0056968464,0.0134282808,0,0.0,0.0000812387,0.0068493151,0.0061538462,0.02725,0.0146214099,0.0424710425,0.0,0.0,0.0
1.3.1.1.21.8.1-16,10MA-1520,"Place Cover on LP Shaft Seal Casing Ready for Operations - Fabricate to Size & Insert Fitted Keys",7112,"CCGTD1_IPS",TT_Task,"58332",-,-,-,100,TK_Complete,02/05/2019,20/05/2019,06/05/2019,21/08/2019,"10MA-1510 FS,10MA-1500 FS","10MA-1510,10MA-1500","10MA-1530 FS","10MA-1530",196,235,196,248,45,54,45,58,56,,"CCGT D1_Integrated Programme Schedule;M&E;Construction;M&E Construction;Steam Turbine (MA);(10MA-01) HP / IP / LP Turbine 10MAA/MAB/MAC;(10MA-01) HP/IP/LP Turbine Final Installation/Alignment",2,1,0.0000180521,0.0054933876,0.0136317396,4,0.0,0.0004132903,0.0136986301,0.0030769231,0.02725,0.0140992167,0.0431145431,0.0089686099,0.0,0.1360575113
1.3.1.1.21.8.1-17,10MA-1530,"If Necessary - Realign HP Casing to Coupled Shaft Assembly, Level off Brack Supports",7112,"CCGTD1_IPS",TT_Task,"58332",-,-,-,100,TK_Complete,17/04/2019,17/04/2019,20/04/2019,24/04/2019,"10MA-1520 FS,10MA-1510 FS","10MA-1520,10MA-1510","10MA-1540 FS,10MA-1550 FS","10MA-1540,10MA-1550",194,230,194,231,45,53,45,54,54,,"CCGT D1_Integrated Programme Schedule;M&E;Construction;M&E Construction;Steam Turbine (MA);(10MA-01) HP / IP / LP Turbine 10MAA/MAB/MAC;(10MA-01) HP/IP/LP Turbine Final Installation/Alignment",2,2,0.0000355246,0.0052899288,0.0138351984,3,0.8,0.0004629301,0.0136986301,0.0061538462,0.053625,0.0135770235,0.0437580438,0.0067264574,0.8,0.1563973037
1.3.1.1.21.8.1-18,10MA-1540,"Install & Align Shaft Turning Gear (Electric Motor)",7112,"CCGTD1_IPS",TT_Task,"58332",-,-,-,100,TK_Complete,07/05/2019,29/04/2019,08/05/2019,30/04/2019,"10MA-1530 FS","10MA-1530","10MA-1620 FS","10MA-1620",196,232,197,232,45,54,45,54,57,,"CCGT D1_Integrated Programme Schedule;M&E;Construction;M&E Construction;Steam Turbine (MA);(10MA-01) HP / IP / LP Turbine 10MAA/MAB/MAC;(10MA-01) HP/IP/LP Turbine Final Installation/Alignment",1,1,0.0000194598,0.004069176,0.0140386572,1,1.0,0.000212649,0.0068493151,0.0030769231,0.029375,0.0104438642,0.0444015444,0.0022421525,1.0,0.053845106
1.3.1.1.21.8.1-19,10MA-1550,"Machine to Size & Install Fitted Keys for HP Casing Guide",7112,"CCGTD1_IPS",TT_Task,"58332",-,-,-,100,TK_Complete,07/05/2019,20/05/2019,09/05/2019,28/06/2019,"10MA-1530 FS","10MA-1530","10MA-1560 FS","10MA-1560",196,235,197,241,45,54,46,56,57,,"CCGT D1_Integrated Programme Schedule;M&E;Construction;M&E Construction;Steam Turbine (MA);(10MA-01) HP / IP / LP Turbine 10MAA/MAB/MAC;(10MA-01) HP/IP/LP Turbine Final Installation/Alignment",1,1,0.0000114275,0.0008138352,0.0140386572,2,0.0,0.0003440592,0.0068493151,0.0030769231,0.01725,0.0020887728,0.0444015444,0.0044843049,0.0,0.107690212
1.3.1.1.21.8.1-20,10MA-1560,"Machine to Size & Install Shim Plates for HP Turbine Bracket & Support",7112,"CCGTD1_IPS",TT_Task,"58332",-,-,-,100,TK_Complete,10/05/2019,10/05/2019,11/05/2019,31/08/2019,"10MA-1550 FS","10MA-1550","10MA-1570 FS","10MA-1570",197,234,197,250,46,54,46,58,58,,"CCGT D1_Integrated Programme Schedule;M&E;Construction;M&E Construction;Steam Turbine (MA);(10MA-01) HP / IP / LP Turbine 10MAA/MAB/MAC;(10MA-01) HP/IP/LP Turbine Final Installation/Alignment",1,1,0.0000086948,0.0006103764,0.014242116,1,0.0,0.0003746876,0.0068493151,0.0030769231,0.013125,0.0015665796,0.045045045,0.0022421525,0.0,0.12024013
1.3.1.1.21.8.1-21,10MA-1570,"Establish Clearance @ Front HP Bearing Pedestal",7112,"CCGTD1_IPS",TT_Task,"58332",-,-,-,100,TK_Complete,13/05/2019,13/05/2019,14/05/2019,14/05/2019,"10MA-1560 FS","10MA-1560","10MA-1580 FS","10MA-1580",197,234,197,234,46,54,46,54,58,,"CCGT D1_Integrated Programme Schedule;M&E;Construction;M&E Construction;Steam Turbine (MA);(10MA-01) HP / IP / LP Turbine 10MAA/MAB/MAC;(10MA-01) HP/IP/LP Turbine Final Installation/Alignment",1,1,0.0000058794,0.0004069176,0.0144455748,1,1.0,0.0004023536,0.0068493151,0.0030769231,0.008875,0.0010443864,0.0456885457,0.0022421525,1.0,0.1315762145
1.3.1.1.21.8.1-22,10MA-1580,"Install Vibration Sensors in Bearing Pedestals",7112,"CCGTD1_IPS",TT_Task,"58332",-,-,-,100,TK_Complete,01/08/2019,19/07/2019,16/08/2019,27/08/2019,"10MA-1570 FS","10MA-1570","10MA-1590 FS","10MA-1590",209,244,211,249,48,56,49,58,67,,"CCGT D1_Integrated Programme Schedule;M&E;Construction;M&E Construction;Steam Turbine (MA);(10MA-01) HP / IP / LP Turbine 10MAA/MAB/MAC;(10MA-01) HP/IP/LP Turbine Final Installation/Alignment",1,1,0.0000029811,0.0002034588,0.0146490336,15,0.0,0.0004354988,0.0068493151,0.0030769231,0.0045,0.0005221932,0.0463320463,0.033632287,0.0,0.1451573861
1.3.1.1.21.8.1-23,10MA-1590,"Install Sealing Rings in Front/Rear HP & Rear LP1 Bearing Pedestals",7112,"CCGTD1_IPS",TT_Task,"58332",-,-,-,100,TK_Complete,20/05/2019,30/04/2019,23/05/2019,02/05/2019,"10MA-1580 FS","10MA-1580","","",198,232,199,232,46,54,46,54,59,,"CCGT D1_Integrated Programme Schedule;M&E;Construction;M&E Construction;Steam Turbine (MA);(10MA-01) HP / IP / LP Turbine 10MAA/MAB/MAC;(10MA-01) HP/IP/LP Turbine Final Installation/Alignment",1,0,0.0,0.0,0.0148524924,3,1.0,0.0004464274,0.0068493151,0.0,0.0,0.0,0.046975547,0.0067264574,1.0,0.1496353547
1.3.1.1.21.8.1-24,10MA-1600,"Prepare Front/Rear HP & Rear LP1 Bearing Pedestals for Flushing",7112,"CCGTD1_IPS",TT_Task,"58332",-,-,-,100,TK_Complete,25/04/2019,25/04/2019,03/05/2019,07/05/2019,"","","10MA-1610 FS","10MA-1610",195,231,196,233,45,54,45,54,55,,"CCGT D1_Integrated Programme Schedule;M&E;Construction;M&E Construction;Steam Turbine (MA);(10MA-01) HP / IP / LP Turbine 10MAA/MAB/MAC;(10MA-01) HP/IP/LP Turbine Final Installation/Alignment",0,1,0.0,0.0042726348,0.0,8,0.6,0.0000812387,0.0,0.0030769231,0.0,0.0109660574,0.0,0.0179372197,0.6,0.0
1.3.1.1.21.8.1-25,10MA-1610,"Steam Turbine Ready for Oil FLushing",7112,"CCGTD1_IPS",TT_Task,"58332",-,-,-,100,TK_Complete,07/06/2019,20/05/2019,07/06/2019,20/05/2019,"10MA-1600 FS,10MAV75 FS,10MA-1605 FS","10MA-1600,10MAV75,10MA-1605","10MA-1620 FS","10MA-1620",201,235,201,235,46,54,46,54,62,,"CCGT D1_Integrated Programme Schedule;M&E;Construction;M&E Construction;Steam Turbine (MA);(10MA-01) HP / IP / LP Turbine 10MAA/MAB/MAC;(10MA-01) HP/IP/LP Turbine Final Installation/Alignment",3,1,0.000008198,0.004069176,0.0083418108,0,1.0,0.0000812387,0.0205479452,0.0030769231,0.012375,0.0104438642,0.0263835264,0.0,1.0,0.0
1.3.1.1.21.8.1-26,10MA-1620,"Steam Turbine Lube Oil Flushing",7112,"CCGTD1_IPS",TT_Task,"58332",-,-,-,100,TK_Complete,08/06/2019,29/05/2019,02/07/2019,21/06/2019,"10MA-1540 FS,10MA-1605 FS,10MA-1610 FS","10MA-1540,10MA-1605,10MA-1610","10MA-1630 FS","10MA-1630",201,236,204,240,47,55,47,56,62,,"CCGT D1_Integrated Programme Schedule;M&E;Construction;M&E Construction;Steam Turbine (MA);(10MA-01) HP / IP / LP Turbine 10MAA/MAB/MAC;(10MA-01) HP/IP/LP Turbine Final Installation/Alignment",3,1,0.0000266641,0.0038657172,0.0170905392,24,1.0,0.0004008557,0.0205479452,0.0030769231,0.04025,0.009921671,0.0540540541,0.0538116592,1.0,0.130962458
1.3.1.1.21.8.1-27,10MA-1670,"Pre-Commissioning - (10MA-01) HP/IP/LP Turbine",7112,"CCGTD1_IPS",TT_Task,"58332",-,-,-,100,TK_Complete,09/09/2019,06/09/2019,17/09/2019,16/11/2019,"10MA-1650 FS,10MA-1660 FS","10MA-1650,10MA-1660","TOP1100 FS,TOP1110 FS","TOP1100,TOP1110",214,251,215,261,50,58,50,60,76,,"CCGT D1_Integrated Programme Schedule;M&E;Construction;M&E Construction;Steam Turbine (MA);(10MA-01) HP / IP / LP Turbine 10MAA/MAB/MAC;(10MA-01) HP/IP/LP Turbine Final Installation/Alignment",2,2,0.0,0.0026449644,0.0248219736,8,0.0,0.0005411752,0.0136986301,0.0061538462,0.0,0.0067885117,0.0785070785,0.0179372197,0.0,0.1884581203
1.3.1.1.21.8.2,58331,"(10MAC-01) LP Turbine 10MAC",7112,"CCGTD1_IPS",WBS,"58328",,,,100,Complete,10/10/2018,08/09/2018,20/09/2019,04/10/2019,,,,,167,199,216,255,38,46,50,59,,,"CCGT D1_Integrated Programme Schedule;M&E;Construction;M&E Construction;Steam Turbine (MA);(10MA-01) HP / IP / LP Turbine 10MAA/MAB/MAC"
1.3.1.1.21.8.2-1,10MAC-1340,"LP-1 - Assemble Cross Over Pipe",7112,"CCGTD1_IPS",TT_Task,"58331",-,-,-,100,TK_Complete,20/06/2019,20/06/2019,24/06/2019,19/09/2019,"10MAC-1320 FS,10MAC-1330 FS","10MAC-1320,10MAC-1330","10MAC-1350 FF","10MAC-1350",203,239,203,252,47,55,47,59,64,,"CCGT D1_Integrated Programme Schedule;M&E;Construction;M&E Construction;Steam Turbine (MA);(10MA-01) HP / IP / LP Turbine 10MAA/MAB/MAC;(10MAC-01) LP Turbine 10MAC",2,1,0.0000111238,0.0024415056,0.013224822,4,0.0,0.0004495719,0.0136986301,0.0030769231,0.0167916667,0.0062663185,0.0418275418,0.0089686099,0.0,0.1509238191
1.3.1.1.21.8.2-2,10MAC-1290,"LP-1 - Drill & Ream Holes for Fitting Bolts in Joint Plane of Outer Casing",7112,"CCGTD1_IPS",TT_Task,"58331",-,-,-,100,TK_Complete,01/04/2019,09/03/2019,03/04/2019,17/03/2019,"10MAC-1080 FS,10MAC-1260 FS","10MAC-1080,10MAC-1260","10MAC-1300 FS","10MAC-1300",191,225,192,226,44,52,44,52,49,,"CCGT D1_Integrated Programme Schedule;M&E;Construction;M&E Construction;Steam Turbine (MA);(10MA-01) HP / IP / LP Turbine 10MAA/MAB/MAC;(10MAC-01) LP Turbine 10MAC",2,1,0.0000092089,0.003051882,0.0115971516,2,0.4,0.000206396,0.0136986301,0.0030769231,0.0139010417,0.0078328982,0.0366795367,0.0044843049,0.4,0.0512829545
1.3.1.1.21.8.2-3,10MAC-1300,"LP-1 - Install Atmospheric Relief Diaphragm into Top Half Outer Casing",7112,"CCGTD1_IPS",TT_Task,"58331",-,-,-,100,TK_Complete,18/02/2019,13/12/2018,22/02/2019,14/12/2018,"10MAC-1290 FS,10MAC-1270 FS","10MAC-1290,10MAC-1270","10MAC-1320 FS","10MAC-1320",185,212,186,213,43,49,43,49,47,,"CCGT D1_Integrated Programme Schedule;M&E;Construction;M&E Construction;Steam Turbine (MA);(10MA-01) HP / IP / LP Turbine 10MAA/MAB/MAC;(10MAC-01) LP Turbine 10MAC",2,1,0.0000103027,0.0028484232,0.0120040692,4,1.0,0.0002875991,0.0136986301,0.0030769231,0.0155520833,0.007310705,0.037966538,0.0089686099,1.0,0.0845557615
1.3.1.1.21.8.2-4,10MAC-1320,"LP-1 - Mount Top Half Cover & Tighten Casing Joint Bolts",7112,"CCGTD1_IPS",TT_Task,"58331",-,-,-,100,TK_Complete,04/04/2019,20/03/2019,09/04/2019,12/09/2019,"10MA-1430 FS,10MAC-1300 FS","10MA-1430,10MAC-1300","10MAC-1340 FS","10MAC-1340",192,226,192,251,44,52,45,58,52,,"CCGT D1_Integrated Programme Schedule;M&E;Construction;M&E Construction;Steam Turbine (MA);(10MA-01) HP / IP / LP Turbine 10MAA/MAB/MAC;(10MAC-01) LP Turbine 10MAC",2,1,0.0000127386,0.0026449644,0.0128179044,5,0.0,0.0003566175,0.0136986301,0.0030769231,0.0192291667,0.0067885117,0.0405405405,0.0112107623,0.0,0.1128359451
1.3.1.1.21.8.2-5,10MAC-1000,"Install & Prealign Steel Bar for LP-1 Casing Guider in Foundation",7112,"CCGTD1_IPS",TT_Task,"58331",-,-,-,100,TK_Complete,10/10/2018,08/09/2018,11/10/2018,19/10/2018,"10MA-1280 FS,10MA-1290 FS,10MA-1300 FS","10MA-1280,10MA-1290,10MA-1300","10MAC-1010 FS","10MAC-1010",167,199,167,205,38,46,39,47,37,,"CCGT D1_Integrated Programme Schedule;M&E;Construction;M&E Construction;Steam Turbine (MA);(10MA-01) HP / IP / LP Turbine 10MAA/MAB/MAC;(10MAC-01) LP Turbine 10MAC",3,1,0.0000111791,0.0549338759,0.006103764,1,0.0,0.0002571979,0.0205479452,0.0030769231,0.016875,0.1409921671,0.0193050193,0.0022421525,0.0,0.0720989433
1.3.1.1.21.8.2-6,10MAC-1010,"LP-1 - Clean LP1 Side Casing & End Walls, Prepare for Assembly",7112,"CCGTD1_IPS",TT_Task,"58331",-,-,-,100,TK_Complete,12/10/2018,06/10/2018,15/10/2018,19/10/2018,"P1010 FS,10MA-1280 FS,10MA-1290 FS,10MAC-1000 FS","P1010,10MA-1280,10MA-1290,10MAC-1000","10MAC-1020 FS","10MAC-1020",167,203,167,205,39,47,39,47,37,,"CCGT D1_Integrated Programme Schedule;M&E;Construction;M&E Construction;Steam Turbine (MA);(10MA-01) HP / IP / LP Turbine 10MAA/MAB/MAC;(10MAC-01) LP Turbine 10MAC",4,1,0.0002041627,0.0547304171,0.0065106816,3,0.0,0.0004933043,0.0273972603,0.0030769231,0.3081875,0.1404699739,0.0205920206,0.0067264574,0.0,0.1688430923
1.3.1.1.21.8.2-7,10MAC-1020,"LP-1 - LP1 Side End Walls on Supporting Arms, Align & Secure, Prepare for Assembly",7112,"CCGTD1_IPS",TT_Task,"58331",-,-,-,100,TK_Complete,15/10/2018,22/10/2018,17/10/2018,23/10/2018,"10MAC-1010 FS","10MAC-1010","10MAC-1030 FS","10MAC-1030",167,205,168,205,39,47,39,47,37,,"CCGT D1_Integrated Programme Schedule;M&E;Construction;M&E Construction;Steam Turbine (MA);(10MA-01) HP / IP / LP Turbine 10MAA/MAB/MAC;(10MAC-01) LP Turbine 10MAC",1,1,0.000213934,0.0545269583,0.0067141404,2,1.0,0.0005031492,0.0068493151,0.0030769231,0.3229375,0.1399477807,0.0212355212,0.0044843049,1.0,0.1728770055
1.3.1.1.21.8.2-8,10MAC-1030,"LP-1 - Fit Bottom Plate, Align & Tack Weld",7112,"CCGTD1_IPS",TT_Task,"58331",-,-,-,100,TK_Complete,17/10/2018,26/10/2018,22/10/2018,30/10/2018,"10MAC-1020 FS","10MAC-1020","10MAC-1040 FS","10MAC-1040",168,206,168,206,39,48,39,48,37,,"CCGT D1_Integrated Programme Schedule;M&E;Construction;M&E Construction;Steam Turbine (MA);(10MA-01) HP / IP / LP Turbine 10MAA/MAB/MAC;(10MAC-01) LP Turbine 10MAC",1,1,0.0002236225,0.0543234995,0.0069175992,5,1.0,0.0005097393,0.0068493151,0.0030769231,0.3375625,0.1394255875,0.0218790219,0.0112107623,1.0,0.1755773148
1.3.1.1.21.8.2-9,10MAC-1040,"LP-1 - Prepare & Install Side Wall",7112,"CCGTD1_IPS",TT_Task,"58331",-,-,-,100,TK_Complete,31/10/2018,22/10/2018,03/11/2018,27/10/2018,"10MAC-1030 FS","10MAC-1030","10MAC-1050 FS","10MAC-1050",170,205,170,206,39,47,39,48,38,,"CCGT D1_Integrated Programme Schedule;M&E;Construction;M&E Construction;Steam Turbine (MA);(10MA-01) HP / IP / LP Turbine 10MAA/MAB/MAC;(10MAC-01) LP Turbine 10MAC",1,1,0.0002332282,0.0541200407,0.007121058,3,0.8,0.0005145582,0.0068493151,0.0030769231,0.3520625,0.1389033943,0.0225225225,0.0067264574,0.8,0.1775518345
1.3.1.1.21.8.2-10,10MAC-1050,"LP-1 - Fit & Weld Bracing Pipes for LP-1 Casing",7112,"CCGTD1_IPS",TT_Task,"58331",-,-,-,100,TK_Complete,06/11/2018,13/11/2018,13/11/2018,26/11/2018,"10MAC-1040 FS","10MAC-1040","10MAC-1080 FS,10MAC-1070 SS","10MAC-1080,10MAC-1070",170,208,171,210,39,48,40,49,38,,"CCGT D1_Integrated Programme Schedule;M&E;Construction;M&E Construction;Steam Turbine (MA);(10MA-01) HP / IP / LP Turbine 10MAA/MAB/MAC;(10MAC-01) LP Turbine 10MAC",1,2,0.0002427511,0.0539165819,0.0073245168,7,0.6,0.0005152388,0.0068493151,0.0061538462,0.3664375,0.138381201,0.0231660232,0.0156950673,0.6,0.177830703
1.3.1.1.21.8.2-11,10MAC-1070,"LP-1 - Align, Mount & Bolt Down the LP-1 Casing",7112,"CCGTD1_IPS",TT_Task,"58331",-,-,-,100,TK_Complete,10/11/2018,24/11/2018,15/11/2018,21/12/2018,"10MAC-1050 SS","10MAC-1050","10MAC-1080 FS","10MAC-1080",171,210,172,214,40,49,40,49,38,,"CCGT D1_Integrated Programme Schedule;M&E;Construction;M&E Construction;Steam Turbine (MA);(10MA-01) HP / IP / LP Turbine 10MAA/MAB/MAC;(10MAC-01) LP Turbine 10MAC",1,1,0.0,0.0537131231,0.0075279756,5,0.0,0.0002382728,0.0068493151,0.0030769231,0.0,0.1378590078,0.0238095238,0.0112107623,0.0,0.0643444187
1.3.1.1.21.8.2-12,10MAC-1080,"LP-1 - Weld Entire LP-1 Outer Casing",7112,"CCGTD1_IPS",TT_Task,"58331",-,-,-,100,TK_Complete,03/12/2018,30/11/2018,12/12/2018,12/12/2018,"10MAC-1050 FS,10MAC-1070 FS","10MAC-1050,10MAC-1070","10MAN1020 FS,10MAC-1090 FS,10MAC-1290 FS","10MAN1020,10MAC-1090,10MAC-1290",174,211,176,212,40,49,41,49,41,,"CCGT D1_Integrated Programme Schedule;M&E;Construction;M&E Construction;Steam Turbine (MA);(10MA-01) HP / IP / LP Turbine 10MAA/MAB/MAC;(10MAC-01) LP Turbine 10MAC",2,3,0.0002615485,0.0535096643,0.0077314344,9,0.6,0.0005682736,0.0136986301,0.0092307692,0.3948125,0.1373368146,0.0244530245,0.0201793722,0.6,0.1995616379
1.3.1.1.21.8.2-13,10MAC-1090,"LP-1 - Remove Top Half Outer Casing, Clean, Weld & Finish Joints on Joint Plane",7112,"CCGTD1_IPS",TT_Task,"58331",-,-,-,100,TK_Complete,13/12/2018,14/12/2018,31/12/2018,14/12/2018,"10MAC-1080 FS","10MAC-1080","10MAC-1100 SS,10MAC-1120 FS,10MAC-1110 FS","10MAC-1100,10MAC-1120,10MAC-1110",176,213,178,213,41,49,41,49,42,,"CCGT D1_Integrated Programme Schedule;M&E;Construction;M&E Construction;Steam Turbine (MA);(10MA-01) HP / IP / LP Turbine 10MAA/MAB/MAC;(10MAC-01) LP Turbine 10MAC",1,3,0.0002511147,0.0512716175,0.0079348932,18,1.0,0.0002600114,0.0068493151,0.0092307692,0.3790625,0.1315926893,0.0250965251,0.0403587444,1.0,0.0732517801
1.3.1.1.21.8.2-14,10MAC-1100,"LP-1 - Align Bottom Half Outer Casing to Longitunal & Transverse Axes & Vertically",7112,"CCGTD1_IPS",TT_Task,"58331",-,-,-,100,TK_Complete,14/12/2018,05/11/2018,03/01/2019,21/11/2018,"10MAC-1090 SS","10MAC-1090","10MAC-1120 FS,10MAC-1110 FS","10MAC-1120,10MAC-1110",176,207,179,209,41,48,41,48,42,,"CCGT D1_Integrated Programme Schedule;M&E;Construction;M&E Construction;Steam Turbine (MA);(10MA-01) HP / IP / LP Turbine 10MAA/MAB/MAC;(10MAC-01) LP Turbine 10MAC",1,2,0.0,0.0510681587,0.008138352,20,1.0,0.0002290455,0.0068493151,0.0061538462,0.0,0.1310704961,0.0257400257,0.0448430493,1.0,0.0605635559
1.3.1.1.21.8.2-15,10MAC-1110,"LP-1 - Align Steel Bar for Outer Casing Guider & Fill Voids w/ Grout",7112,"CCGTD1_IPS",TT_Task,"58331",-,-,-,100,TK_Complete,03/01/2019,24/11/2018,07/01/2019,21/12/2018,"10MAC-1090 FS,10MAC-1100 FS","10MAC-1090,10MAC-1100","10MAC-1130 FS","10MAC-1130",179,210,179,214,41,49,41,49,43,,"CCGT D1_Integrated Programme Schedule;M&E;Construction;M&E Construction;Steam Turbine (MA);(10MA-01) HP / IP / LP Turbine 10MAA/MAB/MAC;(10MAC-01) LP Turbine 10MAC",2,1,0.0001334448,0.0506612411,0.0083418108,4,0.0,0.0001889878,0.0136986301,0.0030769231,0.2014375,0.1300261097,0.0263835264,0.0089686099,0.0,0.0441500015
1.3.1.1.21.8.2-16,10MAC-1120,"LP-1 - Provisionally Mount Exp. Joints for Supporting Arm & Centering Guide",7112,"CCGTD1_IPS",TT_Task,"58331",-,-,-,100,TK_Complete,03/01/2019,15/12/2018,09/01/2019,29/12/2018,"10MAC-1090 FS,10MAC-1100 FS","10MAC-1090,10MAC-1100","10MAC-1130 FS","10MAC-1130",179,213,180,215,41,49,42,50,43,,"CCGT D1_Integrated Programme Schedule;M&E;Construction;M&E Construction;Steam Turbine (MA);(10MA-01) HP / IP / LP Turbine 10MAA/MAB/MAC;(10MAC-01) LP Turbine 10MAC",2,1,0.0001334448,0.0506612411,0.0083418108,6,0.0,0.0002428624,0.0136986301,0.0030769231,0.2014375,0.1300261097,0.0263835264,0.0134529148,0.0,0.0662250023
1.3.1.1.21.8.2-17,10MAC-1130,"LP-1 - Set Down Bottom Half Inner Casing in Bottom Outer Casing",7112,"CCGTD1_IPS",TT_Task,"58331",-,-,-,100,TK_Complete,09/01/2019,21/12/2018,14/01/2019,21/12/2018,"10MAC-1120 FS,10MAC-1110 FS","10MAC-1120,10MAC-1110","10MAC-1140 FS","10MAC-1140",180,214,180,214,42,49,42,49,43,,"CCGT D1_Integrated Programme Schedule;M&E;Construction;M&E Construction;Steam Turbine (MA);(10MA-01) HP / IP / LP Turbine 10MAA/MAB/MAC;(10MAC-01) LP Turbine 10MAC",2,1,0.0002857284,0.0504577823,0.0087487284,5,1.0,0.0004496219,0.0136986301,0.0030769231,0.4313125,0.1295039164,0.0276705277,0.0112107623,1.0,0.1509443156
1.3.1.1.21.8.2-18,10MAC-1140,"LP-1 - Align Elevation & Centerline of Bottom Half of Inner Casing",7112,"CCGTD1_IPS",TT_Task,"58331",-,-,-,100,TK_Complete,14/01/2019,22/12/2018,18/01/2019,28/12/2018,"10MAC-1130 FS","10MAC-1130","10MAC-1150 FS,10MAC-1170 FS","10MAC-1150,10MAC-1170",180,214,181,215,42,49,42,50,43,,"CCGT D1_Integrated Programme Schedule;M&E;Construction;M&E Construction;Steam Turbine (MA);(10MA-01) HP / IP / LP Turbine 10MAA/MAB/MAC;(10MAC-01) LP Turbine 10MAC",1,2,0.0002941748,0.0502543235,0.0089521872,4,0.4,0.0004599719,0.0068493151,0.0061538462,0.4440625,0.1289817232,0.0283140283,0.0089686099,0.4,0.1551852213
1.3.1.1.21.8.2-19,10MAC-1150,"LP-1 - Fix the Inner Casing Radially & Axially, Check Guide Rods",7112,"CCGTD1_IPS",TT_Task,"58331",-,-,-,100,TK_Complete,02/01/2019,26/12/2018,08/01/2019,02/01/2019,"10MAC-1140 FS","10MAC-1140","10MAC-1160 SS","10MAC-1160",179,214,179,215,41,50,41,50,43,,"CCGT D1_Integrated Programme Schedule;M&E;Construction;M&E Construction;Steam Turbine (MA);(10MA-01) HP / IP / LP Turbine 10MAA/MAB/MAC;(10MAC-01) LP Turbine 10MAC",1,1,0.0000037264,0.0496439471,0.009155646,6,0.8,0.0003348892,0.0068493151,0.0030769231,0.005625,0.1274151436,0.028957529,0.0134529148,0.8,0.1039328178
1.3.1.1.21.8.2-20,10MAC-1160,"LP-1 - Clean Botton Half Shaft Seal Casing & Attach to Bearing Pedestal",7112,"CCGTD1_IPS",TT_Task,"58331",-,-,-,100,TK_Complete,22/01/2019,31/12/2018,23/01/2019,31/12/2018,"10MAC-1150 SS","10MAC-1150","10MAC-1180 FS","10MAC-1180",181,215,182,215,42,50,42,50,43,,"CCGT D1_Integrated Programme Schedule;M&E;Construction;M&E Construction;Steam Turbine (MA);(10MA-01) HP / IP / LP Turbine 10MAA/MAB/MAC;(10MAC-01) LP Turbine 10MAC",1,1,0.0000119243,0.0494404883,0.0093591048,1,1.0,0.0003620707,0.0068493151,0.0030769231,0.018,0.1268929504,0.0296010296,0.0022421525,1.0,0.1150703633
1.3.1.1.21.8.2-21,10MAC-1170,"LP-1 - Clean LP-1 Shaft & Prepare for Assembly",7112,"CCGTD1_IPS",TT_Task,"58331",-,-,-,100,TK_Complete,18/01/2019,29/12/2018,21/01/2019,15/01/2019,"10MAC-1140 FS","10MAC-1140","10MAC-1190 FS","10MAC-1190",181,215,181,217,42,50,42,50,43,,"CCGT D1_Integrated Programme Schedule;M&E;Construction;M&E Construction;Steam Turbine (MA);(10MA-01) HP / IP / LP Turbine 10MAA/MAB/MAC;(10MAC-01) LP Turbine 10MAC",1,1,0.0002969488,0.0494404883,0.009155646,3,0.0,0.000208064,0.0068493151,0.0030769231,0.44825,0.1268929504,0.028957529,0.0067264574,0.0,0.0519664089
1.3.1.1.21.8.2-22,10MAC-1180,"LP-1 - Clean Main & Auxiliary Bearing, Prepare for Assembly & Install",7112,"CCGTD1_IPS",TT_Task,"58331",-,-,-,100,TK_Complete,24/01/2019,31/12/2018,25/01/2019,31/12/2018,"10MAC-1160 FS","10MAC-1160","10MAC-1200 FS","10MAC-1200",182,215,182,215,42,50,42,50,43,,"CCGT D1_Integrated Programme Schedule;M&E;Construction;M&E Construction;Steam Turbine (MA);(10MA-01) HP / IP / LP Turbine 10MAA/MAB/MAC;(10MAC-01) LP Turbine 10MAC",1,1,0.0000200395,0.0492370295,0.0095625636,1,1.0,0.000387588,0.0068493151,0.0030769231,0.03025,0.1263707572,0.0302445302,0.0022421525,1.0,0.1255260206
1.3.1.1.21.8.2-23,10MAC-1190,"LP-1 - Slide Bellow Type Expansion Joints onto LP-1 Shaft",7112,"CCGTD1_IPS",TT_Task,"58331",-,-,-,100,TK_Complete,02/01/2019,29/12/2018,05/01/2019,29/12/2018,"10MAC-1170 FS","10MAC-1170","10MAC-1200 FS","10MAC-1200",179,215,179,215,41,50,41,50,43,,"CCGT D1_Integrated Programme Schedule;M&E;Construction;M&E Construction;Steam Turbine (MA);(10MA-01) HP / IP / LP Turbine 10MAA/MAB/MAC;(10MAC-01) LP Turbine 10MAC",1,1,0.0003051054,0.0492370295,0.0093591048,3,1.0,0.0002562332,0.0068493151,0.0030769231,0.4605625,0.1263707572,0.0296010296,0.0067264574,1.0,0.0717036602
1.3.1.1.21.8.2-24,10MAC-1200,"LP-1 - Install Turbine Shaft in Main & Auxiliary Bearings & Align",7112,"CCGTD1_IPS",TT_Task,"58331",-,-,-,100,TK_Complete,05/01/2019,04/01/2019,08/01/2019,05/01/2019,"10MAC-1180 FS,10MAC-1190 FS","10MAC-1180,10MAC-1190","10MAC-1210 FS","10MAC-1210",179,216,179,216,41,50,41,50,43,,"CCGT D1_Integrated Programme Schedule;M&E;Construction;M&E Construction;Steam Turbine (MA);(10MA-01) HP / IP / LP Turbine 10MAA/MAB/MAC;(10MAC-01) LP Turbine 10MAC",2,1,0.0003431142,0.0490335707,0.01017294,3,1.0,0.0006265029,0.0136986301,0.0030769231,0.5179375,0.125848564,0.0321750322,0.0067264574,1.0,0.223420953
1.3.1.1.21.8.2-25,10MAC-1210,"LP-1 - Take Actual Radial & Axial Shaft  Dimensions in the Bearing Pedestals",7112,"CCGTD1_IPS",TT_Task,"58331",-,-,-,100,TK_Complete,08/01/2019,08/01/2019,10/01/2019,14/01/2019,"10MAC-1200 FS","10MAC-1200","10MAC-1220 FS","10MAC-1220",179,216,180,217,41,50,42,50,43,,"CCGT D1_Integrated Programme Schedule;M&E;Construction;M&E Construction;Steam Turbine (MA);(10MA-01) HP / IP / LP Turbine 10MAA/MAB/MAC;(10MAC-01) LP Turbine 10MAC",1,1,0.0003509809,0.0488301119,0.0103763988,2,0.8,0.0006139605,0.0068493151,0.0030769231,0.5298125,0.1253263708,0.0328185328,0.0044843049,0.8,0.2182817205
1.3.1.1.21.8.2-26,10MAC-1220,"LP-1 - Provisionally Align Lower Section of Shaft Seal Casing to Shaft",7112,"CCGTD1_IPS",TT_Task,"58331",-,-,-,100,TK_Complete,10/01/2019,14/01/2019,12/01/2019,22/01/2019,"10MAC-1210 FS","10MAC-1210","10MAC-1230 FS","10MAC-1230",180,217,180,218,42,50,42,51,43,,"CCGT D1_Integrated Programme Schedule;M&E;Construction;M&E Construction;Steam Turbine (MA);(10MA-01) HP / IP / LP Turbine 10MAA/MAB/MAC;(10MAC-01) LP Turbine 10MAC",1,1,0.0003587649,0.0486266531,0.0105798576,2,0.8,0.0006008935,0.0068493151,0.0030769231,0.5415625,0.1248041775,0.0334620335,0.0044843049,0.8,0.2129275737
1.3.1.1.21.8.2-27,10MAC-1230,"LP-1 - Radially & Axially Align Bottom Half Inner Casing to Turbine Shaft",7112,"CCGTD1_IPS",TT_Task,"58331",-,-,-,100,TK_Complete,12/01/2019,14/01/2019,18/01/2019,21/01/2019,"10MAC-1220 FS","10MAC-1220","10MAC-1240 FS","10MAC-1240",180,217,181,218,42,50,42,50,43,,"CCGT D1_Integrated Programme Schedule;M&E;Construction;M&E Construction;Steam Turbine (MA);(10MA-01) HP / IP / LP Turbine 10MAA/MAB/MAC;(10MAC-01) LP Turbine 10MAC",1,1,0.000366466,0.0484231943,0.0107833164,6,1.0,0.0005943574,0.0068493151,0.0030769231,0.5531875,0.1242819843,0.0341055341,0.0134529148,1.0,0.2102494062
1.3.1.1.21.8.2-28,10MAC-1240,"LP-1 - Perform Radially & Axially Blading Clearance Checks",7112,"CCGTD1_IPS",TT_Task,"58331",-,-,-,100,TK_Complete,19/01/2019,14/01/2019,23/01/2019,21/01/2019,"10MAC-1230 FS","10MAC-1230","10MAC-1250 FS","10MAC-1250",181,217,182,218,42,50,42,50,43,,"CCGT D1_Integrated Programme Schedule;M&E;Construction;M&E Construction;Steam Turbine (MA);(10MA-01) HP / IP / LP Turbine 10MAA/MAB/MAC;(10MAC-01) LP Turbine 10MAC",1,1,0.0003740843,0.0482197355,0.0109867752,4,0.8,0.0005920626,0.0068493151,0.0030769231,0.5646875,0.1237597911,0.0347490347,0.0089686099,0.8,0.2093091249
1.3.1.1.21.8.2-29,10MAC-1250,"LP-1 - Install Guide Blade Carrier & Stationary Blade Ring Upper Part",7112,"CCGTD1_IPS",TT_Task,"58331",-,-,-,100,TK_Complete,24/01/2019,20/01/2019,26/01/2019,21/01/2019,"10MAC-1240 FS","10MAC-1240","10MAC-1260 FS,10MA-1410 FS","10MAC-1260,10MA-1410",182,218,182,218,42,50,42,50,43,,"CCGT D1_Integrated Programme Schedule;M&E;Construction;M&E Construction;Steam Turbine (MA);(10MA-01) HP / IP / LP Turbine 10MAA/MAB/MAC;(10MAC-01) LP Turbine 10MAC",1,2,0.0003816198,0.0480162767,0.011190234,2,1.0,0.0005875204,0.0068493151,0.0061538462,0.5760625,0.1232375979,0.0353925354,0.0044843049,1.0,0.2074479564
1.3.1.1.21.8.2-30,10MAC-1260,"LP-1 - Mount Outer Shell of Inner Casing & Tighten Casing Joint Bolts",7112,"CCGTD1_IPS",TT_Task,"58331",-,-,-,100,TK_Complete,21/01/2019,15/02/2019,24/01/2019,17/03/2019,"10MAC-1250 FS","10MAC-1250","10MAC-1270 FS,A1890 FS,10MAC-1290 FS","10MAC-1270,A1890,10MAC-1290",181,222,182,226,42,51,42,52,43,,"CCGT D1_Integrated Programme Schedule;M&E;Construction;M&E Construction;Steam Turbine (MA);(10MA-01) HP / IP / LP Turbine 10MAA/MAB/MAC;(10MAC-01) LP Turbine 10MAC",1,3,0.0001688244,0.0205493388,0.0113936928,3,0.0,0.0003191904,0.0068493151,0.0092307692,0.25484375,0.0527415144,0.036036036,0.0067264574,0.0,0.0975002563
1.3.1.1.21.8.2-31,10MAC-1270,"LP-1 - Check Axial Displacement of Inner Casing",7112,"CCGTD1_IPS",TT_Task,"58331",-,-,-,100,TK_Complete,01/04/2019,01/04/2019,01/04/2019,01/04/2019,"10MAC-1260 FS","10MAC-1260","SC1050 FS,10MAC-1300 FS,A1630 FS,A1890 FS","SC1050,10MAC-1300,A1630,A1890",191,228,191,228,44,53,44,53,49,,"CCGT D1_Integrated Programme Schedule;M&E;Construction;M&E Construction;Steam Turbine (MA);(10MA-01) HP / IP / LP Turbine 10MAA/MAB/MAC;(10MAC-01) LP Turbine 10MAC",1,4,0.000043657,0.0201424212,0.0115971516,0,1.0,0.0000812387,0.0068493151,0.0123076923,0.0659010417,0.0516971279,0.0366795367,0.0,1.0,0.0
1.3.1.1.21.8.2-32,10MAC-1330,"LP-1 - Pre-assemble Cross Over Pipe",7112,"CCGTD1_IPS",TT_Task,"58331",-,-,-,100,TK_Complete,01/04/2019,01/04/2019,29/04/2019,02/09/2019,"","","10MAC-1340 FS","10MAC-1340",191,228,195,250,44,53,45,58,49,,"CCGT D1_Integrated Programme Schedule;M&E;Construction;M&E Construction;Steam Turbine (MA);(10MA-01) HP / IP / LP Turbine 10MAA/MAB/MAC;(10MAC-01) LP Turbine 10MAC",0,1,0.0,0.0026449644,0.0,28,0.0,0.0000812387,0.0,0.0030769231,0.0,0.0067885117,0.0,0.0627802691,0.0,0.0
1.3.1.1.21.8.2-33,10MAC-1350,"LP-1 - Insulate Cross Over Pipe & Turbine",7112,"CCGTD1_IPS",TT_Task,"58331",-,-,-,100,TK_Complete,31/08/2019,17/08/2019,20/09/2019,04/10/2019,"10MAC-1340 FF","10MAC-1340","TOP1100 FS","TOP1100",213,248,216,255,49,57,50,59,70,,"CCGT D1_Integrated Programme Schedule;M&E;Construction;M&E Construction;Steam Turbine (MA);(10MA-01) HP / IP / LP Turbine 10MAA/MAB/MAC;(10MAC-01) LP Turbine 10MAC",1,1,0.000008888,0.0022380468,0.0134282808,20,0.0,0.0004541061,0.0068493151,0.0030769231,0.0134166667,0.0057441253,0.0424710425,0.0448430493,0.0,0.1527817106
1.3.1.1.21.8.3,58330,"(10MA-01) HP/IP/LP Turbine Common Prep Work",7112,"CCGTD1_IPS",WBS,"58328",,,,100,Complete,26/07/2018,16/07/2018,10/10/2018,19/10/2018,,,,,156,191,167,205,36,44,38,47,,,"CCGT D1_Integrated Programme Schedule;M&E;Construction;M&E Construction;Steam Turbine (MA);(10MA-01) HP / IP / LP Turbine 10MAA/MAB/MAC"
1.3.1.1.21.8.3-1,10MA-1150,"Clean  Front HP Bearing Pedestal, Prepare for Assembly and Set Down on Adjusting Screws",7112,"CCGTD1_IPS",TT_Task,"58330",-,-,-,100,TK_Complete,17/08/2018,23/07/2018,20/08/2018,26/07/2018,"SI1MA-4-59 FS,10MA-1140 FF,SI1MA-4-55 FS,SI1MAD4-25 FS,10MA-1130 FS,SI1MA-4-45 FS,SI1MA-4-25 FS","SI1MA-4-59,10MA-1140,SI1MA-4-55,SI1MAD4-25,10MA-1130,SI1MA-4-45,SI1MA-4-25","10MA-1180 FS","10MA-1180",159,192,159,192,37,44,37,45,34,,"CCGT D1_Integrated Programme Schedule;M&E;Construction;M&E Construction;Steam Turbine (MA);(10MA-01) HP / IP / LP Turbine 10MAA/MAB/MAC;(10MA-01) HP/IP/LP Turbine Common Prep Work",7,1,0.00007078,0.0669379451,0.0032553408,3,1.0,0.0003954118,0.0479452055,0.0030769231,0.10684375,0.1718015666,0.0102960103,0.0067264574,1.0,0.1287318131
1.3.1.1.21.8.3-2,10MA-1170,"Install Anchor Bolts - Rear HP Bearing Pedestal",7112,"CCGTD1_IPS",TT_Task,"58330",-,-,-,100,TK_Complete,17/08/2018,23/07/2018,17/08/2018,25/07/2018,"10MA-1140 FS,10MA-1110 FS","10MA-1140,10MA-1110","10MA-1180 FF,10MA-1200 FS","10MA-1180,10MA-1200",159,192,159,192,37,44,37,44,34,,"CCGT D1_Integrated Programme Schedule;M&E;Construction;M&E Construction;Steam Turbine (MA);(10MA-01) HP / IP / LP Turbine 10MAA/MAB/MAC;(10MA-01) HP/IP/LP Turbine Common Prep Work",2,2,0.0000276061,0.0671414039,0.0028484232,0,1.0,0.0000812387,0.0136986301,0.0061538462,0.041671875,0.1723237598,0.009009009,0.0,1.0,0.0
1.3.1.1.21.8.3-3,10MA-1180,"Clean  Rear  HP Bearing Pedestal, Prepare for Assembly and Set Down on Adjusting Screws",7112,"CCGTD1_IPS",TT_Task,"58330",-,-,-,100,TK_Complete,17/08/2018,23/07/2018,24/08/2018,26/07/2018,"10MA-1150 FS,10MA-1170 FF,10MA-1130 FS","10MA-1150,10MA-1170,10MA-1130","10MA-1210 SS","10MA-1210",159,192,160,192,37,44,37,45,34,,"CCGT D1_Integrated Programme Schedule;M&E;Construction;M&E Construction;Steam Turbine (MA);(10MA-01) HP / IP / LP Turbine 10MAA/MAB/MAC;(10MA-01) HP/IP/LP Turbine Common Prep Work",3,1,0.0001189327,0.0667344863,0.0036622584,7,1.0,0.0005776209,0.0205479452,0.0030769231,0.17953125,0.1712793734,0.0115830116,0.0156950673,1.0,0.2033916449
1.3.1.1.21.8.3-4,10MA-1200,"Install Anchor Bolts - Rear LP-1 Bearing Pedestal",7112,"CCGTD1_IPS",TT_Task,"58330",-,-,-,100,TK_Complete,17/08/2018,23/07/2018,17/08/2018,26/07/2018,"10MA-1170 FS","10MA-1170","10MA-1210 SS","10MA-1210",159,192,159,192,37,44,37,45,34,,"CCGT D1_Integrated Programme Schedule;M&E;Construction;M&E Construction;Steam Turbine (MA);(10MA-01) HP / IP / LP Turbine 10MAA/MAB/MAC;(10MA-01) HP/IP/LP Turbine Common Prep Work",1,1,0.0000246974,0.0667344863,0.003051882,0,0.6,0.0000812387,0.0068493151,0.0030769231,0.03728125,0.1712793734,0.0096525097,0.0,0.6,0.0
1.3.1.1.21.8.3-5,10MA-1210,"Clean  Rear  LP-1 Bearing Pedestal, Prepare for Assembly and Set Down on Adjusting Screws",7112,"CCGTD1_IPS",TT_Task,"58330",-,-,-,100,TK_Complete,26/07/2018,23/07/2018,01/08/2018,24/08/2018,"10MA-1200 SS,10MA-1180 SS","10MA-1200,10MA-1180","10MA-1220 FS,10MA-1230 FS","10MA-1220,10MA-1230",156,192,157,197,36,44,36,45,33,,"CCGT D1_Integrated Programme Schedule;M&E;Construction;M&E Construction;Steam Turbine (MA);(10MA-01) HP / IP / LP Turbine 10MAA/MAB/MAC;(10MA-01) HP/IP/LP Turbine Common Prep Work",2,2,0.000169963,0.0665310275,0.004069176,6,0.0,0.0006422617,0.0136986301,0.0061538462,0.2565625,0.1707571802,0.0128700129,0.0134529148,0.0,0.2298781172
1.3.1.1.21.8.3-6,10MA-1220,"Align Front & Rear HP Bearing Pedestals",7112,"CCGTD1_IPS",TT_Task,"58330",-,-,-,100,TK_Complete,01/08/2018,01/08/2018,06/08/2018,06/08/2018,"10MA-1210 FS","10MA-1210","10MA-1240 FS,10MKA1010 SS,10MA-1230 FS","10MA-1240,10MKA1010,10MA-1230",157,193,157,194,36,45,36,45,34,,"CCGT D1_Integrated Programme Schedule;M&E;Construction;M&E Construction;Steam Turbine (MA);(10MA-01) HP / IP / LP Turbine 10MAA/MAB/MAC;(10MA-01) HP/IP/LP Turbine Common Prep Work",1,3,0.0000611329,0.0663275687,0.0042726348,5,1.0,0.0003548222,0.0068493151,0.0092307692,0.09228125,0.1702349869,0.0135135135,0.0112107623,1.0,0.1121002981
1.3.1.1.21.8.3-7,10MA-1230,"Align Rear LP-1 Bearing Pedestals",7112,"CCGTD1_IPS",TT_Task,"58330",-,-,-,100,TK_Complete,30/08/2018,10/08/2018,04/09/2018,24/08/2018,"10MA-1210 FS,10MA-1220 FS","10MA-1210,10MA-1220","10MA-1250 FS,10MKA1070 FS,10MKW10 FS,10MBA1100 FS","10MA-1250,10MKA1070,10MKW10,10MBA1100",161,195,161,197,37,45,37,45,36,,"CCGT D1_Integrated Programme Schedule;M&E;Construction;M&E Construction;Steam Turbine (MA);(10MA-01) HP / IP / LP Turbine 10MAA/MAB/MAC;(10MA-01) HP/IP/LP Turbine Common Prep Work",2,4,0.0001230731,0.0651068159,0.0044760936,5,0.0,0.0004304155,0.0136986301,0.0123076923,0.18578125,0.1671018277,0.0141570142,0.0112107623,0.0,0.1430745297
1.3.1.1.21.8.3-8,10MA-1240,"Set-up Formwork for Grouting Front & Rear HP Bearing Pedestals",7112,"CCGTD1_IPS",TT_Task,"58330",-,-,-,100,TK_Complete,06/08/2018,06/08/2018,08/08/2018,08/08/2018,"10MA-1220 FS","10MA-1220","10MA-1260 FS,10MA-1250 FS","10MA-1260,10MA-1250",157,194,158,194,36,45,36,45,34,,"CCGT D1_Integrated Programme Schedule;M&E;Construction;M&E Construction;Steam Turbine (MA);(10MA-01) HP / IP / LP Turbine 10MAA/MAB/MAC;(10MA-01) HP/IP/LP Turbine Common Prep Work",1,2,0.0000662877,0.0618514751,0.0044760936,2,1.0,0.0001114761,0.0068493151,0.0061538462,0.1000625,0.1587467363,0.0141570142,0.0044843049,1.0,0.0123896926
1.3.1.1.21.8.3-9,10MA-1250,"Set-up Formwork for Grouting Rear LP-1 Bearing Pedestal",7112,"CCGTD1_IPS",TT_Task,"58330",-,-,-,100,TK_Complete,04/09/2018,17/08/2018,07/09/2018,24/08/2018,"10MA-1230 FS,10MA-1240 FS","10MA-1230,10MA-1240","10MA-1260 FS","10MA-1260",161,196,162,197,37,45,37,45,36,,"CCGT D1_Integrated Programme Schedule;M&E;Construction;M&E Construction;Steam Turbine (MA);(10MA-01) HP / IP / LP Turbine 10MAA/MAB/MAC;(10MA-01) HP/IP/LP Turbine Common Prep Work",2,1,0.000066267,0.0616480163,0.0048830112,3,0.8,0.0001666317,0.0136986301,0.0030769231,0.10003125,0.1582245431,0.0154440154,0.0067264574,0.8,0.0349895934
1.3.1.1.21.8.3-10,10MA-1260,"Align Check of Pedestals before Grouting",7112,"CCGTD1_IPS",TT_Task,"58330",-,-,-,100,TK_Complete,25/08/2018,25/08/2018,28/08/2018,27/08/2018,"10MA-1250 FS,10MA-1240 FS","10MA-1250,10MA-1240","10MA-1290 FS,10MA-1270 FS","10MA-1290,10MA-1270",160,197,160,197,37,46,37,46,35,,"CCGT D1_Integrated Programme Schedule;M&E;Construction;M&E Construction;Steam Turbine (MA);(10MA-01) HP / IP / LP Turbine 10MAA/MAB/MAC;(10MA-01) HP/IP/LP Turbine Common Prep Work",2,2,0.0001565896,0.0614445575,0.00508647,3,1.0,0.0002705485,0.0136986301,0.0061538462,0.236375,0.1577023499,0.0160875161,0.0067264574,1.0,0.0775693138
1.3.1.1.21.8.3-11,10MA-1270,"Grout Pedestals",7112,"CCGTD1_IPS",TT_Task,"58330",-,-,-,100,TK_Complete,12/09/2018,25/08/2018,14/09/2018,30/08/2018,"10MA-1260 FS","10MA-1260","10MA-1280 FS,SC1040 FS","10MA-1280,SC1040",163,197,163,197,38,46,38,46,36,,"CCGT D1_Integrated Programme Schedule;M&E;Construction;M&E Construction;Steam Turbine (MA);(10MA-01) HP / IP / LP Turbine 10MAA/MAB/MAC;(10MA-01) HP/IP/LP Turbine Common Prep Work",1,2,0.0000502643,0.0608341811,0.0052899288,2,1.0,0.0001231198,0.0068493151,0.0061538462,0.075875,0.1561357702,0.0167310167,0.0044843049,1.0,0.0171607047
1.3.1.1.21.8.3-12,10MA-1280,"Align Check of Bearing Casings & Baseplates After Grouting",7112,"CCGTD1_IPS",TT_Task,"58330",-,-,-,100,TK_Complete,23/08/2018,23/08/2018,25/08/2018,24/08/2018,"10MA-1270 FS","10MA-1270","10MAN1000 FS,10MAC-1000 FS,10MAC-1010 FS,10MAA-1000 FS,10MAV20 FS","10MAN1000,10MAC-1000,10MAC-1010,10MAA-1000,10MAV20",160,196,160,197,37,45,37,45,35,,"CCGT D1_Integrated Programme Schedule;M&E;Construction;M&E Construction;Steam Turbine (MA);(10MA-01) HP / IP / LP Turbine 10MAA/MAB/MAC;(10MA-01) HP/IP/LP Turbine Common Prep Work",1,5,0.0000607395,0.0606307223,0.0054933876,2,1.0,0.0001861009,0.0068493151,0.0153846154,0.0916875,0.155613577,0.0173745174,0.0044843049,1.0,0.0429670894
1.3.1.1.21.8.3-13,10MA-1290,"Install & Prealign Steel Bars for LP-1 Casing Centering Guiders in Foundation",7112,"CCGTD1_IPS",TT_Task,"58330",-,-,-,100,TK_Complete,29/09/2018,08/09/2018,08/10/2018,19/10/2018,"10MA-1260 FS,KD_C04 FS","10MA-1260,KD_C04","10MA-1300 FS,10MAC-1000 FS,10MAC-1010 FS","10MA-1300,10MAC-1000,10MAC-1010",165,199,166,205,38,46,38,47,37,,"CCGT D1_Integrated Programme Schedule;M&E;Construction;M&E Construction;Steam Turbine (MA);(10MA-01) HP / IP / LP Turbine 10MAA/MAB/MAC;(10MA-01) HP/IP/LP Turbine Common Prep Work",2,3,0.0001420154,0.0553407935,0.0052899288,9,0.0,0.0002716188,0.0136986301,0.0092307692,0.214375,0.1420365535,0.0167310167,0.0201793722,0.0,0.078007887
1.3.1.1.21.8.3-14,10MA-1300,"Fill in Voids in Casing Centering Guides with Grout",7112,"CCGTD1_IPS",TT_Task,"58330",-,-,-,100,TK_Complete,08/10/2018,08/10/2018,10/10/2018,19/10/2018,"10MA-1290 FS","10MA-1290","10MAC-1000 FS","10MAC-1000",166,203,167,205,38,47,38,47,37,,"CCGT D1_Integrated Programme Schedule;M&E;Construction;M&E Construction;Steam Turbine (MA);(10MA-01) HP / IP / LP Turbine 10MAA/MAB/MAC;(10MA-01) HP/IP/LP Turbine Common Prep Work",1,1,0.0,0.0551373347,0.0054933876,2,0.4,0.0001583921,0.0068493151,0.0030769231,0.0,0.1415143603,0.0173745174,0.0044843049,0.4,0.0316134322
1.3.1.1.21.8.3-15,10MA-1110,"Clean Turbine & Generator Foundations & Confirm Survey Acceptance",7112,"CCGTD1_IPS",TT_Task,"58330",-,-,-,100,TK_Complete,08/08/2018,23/07/2018,10/08/2018,26/07/2018,"KD_C04 FS,KD_B06 FS","KD_C04,KD_B06","10MA-1170 FS,10MA-1140 FS,10MA-1130 FS","10MA-1170,10MA-1140,10MA-1130",158,192,158,192,36,44,36,45,34,,"CCGT D1_Integrated Programme Schedule;M&E;Construction;M&E Construction;Steam Turbine (MA);(10MA-01) HP / IP / LP Turbine 10MAA/MAB/MAC;(10MA-01) HP/IP/LP Turbine Common Prep Work",2,3,0.0000103096,0.0679552391,0.0016276704,2,1.0,0.0000834151,0.0136986301,0.0092307692,0.0155625,0.1744125326,0.0051480051,0.0044843049,1.0,0.0008917726
1.3.1.1.21.8.3-16,10MA-1130,"Markout Reference Points for Turbine Floor Elev., Longitudinal & Transverse Axis",7112,"CCGTD1_IPS",TT_Task,"58330",-,-,-,100,TK_Complete,14/08/2018,16/07/2018,16/08/2018,26/07/2018,"10MA-1110 FS","10MA-1110","10MA-1150 FS,10MA-1180 FS,10MA-1140 FS","10MA-1150,10MA-1180,10MA-1140",158,191,159,192,37,44,37,45,34,,"CCGT D1_Integrated Programme Schedule;M&E;Construction;M&E Construction;Steam Turbine (MA);(10MA-01) HP / IP / LP Turbine 10MAA/MAB/MAC;(10MA-01) HP/IP/LP Turbine Common Prep Work",1,3,0.0000058483,0.0677517803,0.0018311292,2,0.4,0.0001522477,0.0068493151,0.0092307692,0.008828125,0.1738903394,0.0057915058,0.0044843049,0.4,0.0290958
1.3.1.1.21.8.3-17,10MA-1140,"Install Anchor Bolts - Front HP Bearing Pedestal",7112,"CCGTD1_IPS",TT_Task,"58330",-,-,-,100,TK_Complete,17/08/2018,23/07/2018,17/08/2018,25/07/2018,"SI1MA-4-55 FS,SI1MA-4-45 FS,SI1MA-4-25 FS,10MA-1130 FS,10MA-1110 FS","SI1MA-4-55,SI1MA-4-45,SI1MA-4-25,10MA-1130,10MA-1110","10MA-1150 FF,10MA-1170 FS","10MA-1150,10MA-1170",159,192,159,192,37,44,37,44,34,,"CCGT D1_Integrated Programme Schedule;M&E;Construction;M&E Construction;Steam Turbine (MA);(10MA-01) HP / IP / LP Turbine 10MAA/MAB/MAC;(10MA-01) HP/IP/LP Turbine Common Prep Work",5,2,0.000000559,0.0675483215,0.0026449644,0,0.8,0.0000812387,0.0342465753,0.0061538462,0.00084375,0.1733681462,0.0083655084,0.0,0.8,0.0
1.3.1.1.21.8.4,58329,"(10MAA-01) HP/IP Turbine 10MAA/MAB",7112,"CCGTD1_IPS",WBS,"58328",,,,100,Complete,04/10/2018,12/09/2018,13/12/2018,15/01/2019,,,,,166,199,176,217,38,46,41,50,,,"CCGT D1_Integrated Programme Schedule;M&E;Construction;M&E Construction;Steam Turbine (MA);(10MA-01) HP / IP / LP Turbine 10MAA/MAB/MAC"
1.3.1.1.21.8.4-1,10MAA-1000,"HP/IP - Clean HP Turbine and Prepare for Assembly",7112,"CCGTD1_IPS",TT_Task,"58329",-,-,-,100,TK_Complete,04/10/2018,12/09/2018,09/10/2018,18/09/2018,"SI1MA-4-25 FS,SI1MA-4-55 FS,SI1MA-4-45 FS,10MA-1280 FS","SI1MA-4-25,SI1MA-4-55,SI1MA-4-45,10MA-1280","10MAA-1010 FS","10MAA-1010",166,199,166,200,38,46,38,46,37,,"CCGT D1_Integrated Programme Schedule;M&E;Construction;M&E Construction;Steam Turbine (MA);(10MA-01) HP / IP / LP Turbine 10MAA/MAB/MAC;(10MAA-01) HP/IP Turbine 10MAA/MAB",4,1,0.0000344481,0.0099694812,0.0056968464,5,1.0,0.0002057745,0.0273972603,0.0030769231,0.052,0.0255874674,0.018018018,0.0112107623,1.0,0.0510282987
1.3.1.1.21.8.4-2,10MAA-1010,"HP/IP - Set Down Turbine on Bearing Pedestals & Provisionaly Align",7112,"CCGTD1_IPS",TT_Task,"58329",-,-,-,100,TK_Complete,10/10/2018,18/09/2018,18/10/2018,12/10/2018,"10MAA-1000 FS,KD_C04 FS","10MAA-1000,KD_C04","10MAA-1020 FS,10MAA-1040 FS","10MAA-1020,10MAA-1040",167,200,168,204,38,46,39,47,37,,"CCGT D1_Integrated Programme Schedule;M&E;Construction;M&E Construction;Steam Turbine (MA);(10MA-01) HP / IP / LP Turbine 10MAA/MAB/MAC;(10MAA-01) HP/IP Turbine 10MAA/MAB",2,2,0.0000394165,0.0097660224,0.0059003052,8,0.0,0.0002581337,0.0136986301,0.0061538462,0.0595,0.0250652742,0.0186615187,0.0179372197,0.0,0.0724823917
1.3.1.1.21.8.4-3,10MAA-1020,"HP/IP - Establish the Radial & Axial Check Dimensions for the Shaft in Bearing Pedestals",7112,"CCGTD1_IPS",TT_Task,"58329",-,-,-,100,TK_Complete,09/10/2018,29/09/2018,09/10/2018,12/10/2018,"10MAA-1010 FS","10MAA-1010","10MA1400 FS","10MA1400",166,202,166,204,38,47,38,47,37,,"CCGT D1_Integrated Programme Schedule;M&E;Construction;M&E Construction;Steam Turbine (MA);(10MA-01) HP / IP / LP Turbine 10MAA/MAB/MAC;(10MAA-01) HP/IP Turbine 10MAA/MAB",1,1,0.0000079496,0.0036622584,0.006103764,0,0.0,0.0000812387,0.0068493151,0.0030769231,0.012,0.0093994778,0.0193050193,0.0,0.0,0.0
1.3.1.1.21.8.4-4,10MAA-1040,"HP/IP - Clean Main & Auxiliary Bearings, Prepare for Assembly & Install",7112,"CCGTD1_IPS",TT_Task,"58329",-,-,-,100,TK_Complete,11/12/2018,26/11/2018,13/12/2018,07/12/2018,"10MAA-1010 FS","10MAA-1010","10MAA-1050 FS","10MAA-1050",175,210,176,212,41,49,41,49,42,,"CCGT D1_Integrated Programme Schedule;M&E;Construction;M&E Construction;Steam Turbine (MA);(10MA-01) HP / IP / LP Turbine 10MAA/MAB/MAC;(10MAA-01) HP/IP Turbine 10MAA/MAB",1,1,0.0000309701,0.0077314344,0.006103764,2,0.0,0.0003010734,0.0068493151,0.0030769231,0.04675,0.019843342,0.0193050193,0.0044843049,0.0,0.0900768416
1.3.1.1.21.8.4-5,10MAA-1050,"HP/IP - Set Down Shaft in Bearings & Align Shaft",7112,"CCGTD1_IPS",TT_Task,"58329",-,-,-,100,TK_Complete,03/12/2018,08/12/2018,11/12/2018,17/12/2018,"10MAA-1040 FS","10MAA-1040","10MAA-1060 FS","10MAA-1060",174,212,175,213,40,49,41,49,41,,"CCGT D1_Integrated Programme Schedule;M&E;Construction;M&E Construction;Steam Turbine (MA);(10MA-01) HP / IP / LP Turbine 10MAA/MAB/MAC;(10MAA-01) HP/IP Turbine 10MAA/MAB",1,1,0.0000312599,0.0075279756,0.0063072228,8,1.0,0.0003375639,0.0068493151,0.0030769231,0.0471875,0.0193211488,0.0199485199,0.0179372197,1.0,0.1050287665
1.3.1.1.21.8.4-6,10MAA-1060,"HP/IP Perform Radial & Axial Clearance Checks on Turbine",7112,"CCGTD1_IPS",TT_Task,"58329",-,-,-,100,TK_Complete,12/12/2018,22/12/2018,13/12/2018,15/01/2019,"10MAA-1050 FS","10MAA-1050","10MAL20 FS,10MA-1660 FS,10MAX20 FS","10MAL20,10MA-1660,10MAX20",176,214,176,217,41,49,41,50,42,,"CCGT D1_Integrated Programme Schedule;M&E;Construction;M&E Construction;Steam Turbine (MA);(10MA-01) HP / IP / LP Turbine 10MAA/MAB/MAC;(10MAA-01) HP/IP Turbine 10MAA/MAB",1,3,0.000031467,0.0073245168,0.0065106816,1,0.0,0.0003687732,0.0068493151,0.0092307692,0.0475,0.0187989556,0.0205920206,0.0022421525,0.0,0.1178167031
1.3.1.1.22,58326,"Cost Centre",7112,"CCGTD1_IPS",WBS,"58325",,,,100,Complete,06/04/2018,06/04/2018,10/12/2018,28/06/2018,,,,,140,177,175,188,32,41,41,44,,,"CCGT D1_Integrated Programme Schedule;M&E;Construction;M&E Construction"
1.3.1.2,58324,"Civil Handover Dates",7112,"CCGTD1_IPS",WBS,"58320",,,,100,Complete,01/03/2018,07/02/2018,02/07/2020,26/12/2019,,,,,135,168,257,266,31,39,60,62,,,"CCGT D1_Integrated Programme Schedule;M&E;Construction"
1.3.1.2-1,CP1HB-6A25,"Foundations for HRSG",7112,"CCGTD1_IPS",TT_FinMile,"58324",-,-,-,100,TK_Complete,01/03/2018,08/03/2018,01/03/2018,08/03/2018,"A1010 FS","A1010","","",135,172,135,172,31,40,31,40,21,,"CCGT D1_Integrated Programme Schedule;M&E;Construction;Civil Handover Dates",1,0,0.0,0.0,0.0002034588,0,1.0,0.0000812387,0.0068493151,0.0,0.0,0.0,0.0006435006,0.0,1.0,0.0
1.3.1.2-2,CP1UMC5A45,"Turboset Foundation (UMC) (Completion of Foundatio Repair)",7112,"CCGTD1_IPS",TT_FinMile,"58324",-,-,-,100,TK_Complete,26/06/2018,14/06/2018,26/06/2018,14/06/2018,"A1010 FS","A1010","","",151,186,151,186,35,43,35,43,31,,"CCGT D1_Integrated Programme Schedule;M&E;Construction;Civil Handover Dates",1,0,0.0,0.0,0.0002034588,0,1.0,0.0000812387,0.0068493151,0.0,0.0,0.0,0.0006435006,0.0,1.0,0.0
1.3.1.2-3,KD_B07,"B7 - Construct Pile Caps, Tie Beams& GF Slab of Turbine Hall Building",7112,"CCGTD1_IPS",TT_FinMile,"58324",-,-,-,100,TK_Complete,31/10/2018,31/08/2018,31/10/2018,31/08/2018,"A1010 FS","A1010","","",170,198,170,198,39,46,39,46,38,,"CCGT D1_Integrated Programme Schedule;M&E;Construction;Civil Handover Dates",1,0,0.0,0.0,0.0002034588,0,1.0,0.0000812387,0.0068493151,0.0,0.0,0.0,0.0006435006,0.0,1.0,0.0
1.3.1.2-4,KD_C06,"C6 - Construct Foundations & Plinths for Support Steel for A/G Sections of CWP South of T/H",7112,"CCGTD1_IPS",TT_FinMile,"58324",-,-,-,100,TK_Complete,02/07/2020,07/03/2019,02/07/2020,07/03/2019,"A1010 FS","A1010","10PAB-02-10 FS,10PAB-01-110 FS","10PAB-02-10,10PAB-01-110",257,224,257,224,60,52,60,52,91,,"CCGT D1_Integrated Programme Schedule;M&E;Construction;Civil Handover Dates",1,2,0.0000000207,0.0138351984,0.0002034588,0,1.0,0.0000812387,0.0068493151,0.0061538462,0.00003125,0.0355091384,0.0006435006,0.0,1.0,0.0
1.3.1.2-5,KD_C03,"C3 - Construct Polishing Pit, G/F Slab for Condensate Polishing Plant area of T/H",7112,"CCGTD1_IPS",TT_FinMile,"58324",-,-,-,100,TK_Complete,02/07/2020,30/09/2018,02/07/2020,30/09/2018,"","","10LD-10 FS","10LD-10",257,202,257,202,60,47,60,47,91,,"CCGT D1_Integrated Programme Schedule;M&E;Construction;Civil Handover Dates",0,1,0.0,0.004069176,0.0,0,1.0,0.0000812387,0.0,0.0030769231,0.0,0.0104438642,0.0,0.0,1.0,0.0
1.3.1.2-6,KD_E05,"E5 - Complete Foundations & Plinths for Chemical Unloading Bay, Urea StorageTank, Ammonia,",7112,"CCGTD1_IPS",TT_FinMile,"58324",-,-,-,100,TK_Complete,31/12/2018,21/01/2019,31/12/2018,21/01/2019,"A1010 FS","A1010","10LBC20 FS,10PCB10 FS,00SCA110 FS,10EK10 FS,GKB10 FS,10GM-01-10 FS,00GA10 FS,FSS22.1060 FS,00UPR10 FS,10PAB-02-10 FS,10QCB20 FS,10SGC-02-10 FS,00GHD-110 FS,10PUR10 FS,10SGA-02-10 FS,00MBH20 FS,00LAB20 FS,10LBA80-20 FS,10PAH10 FS,A3220 FS,00GM-03-10 FS,10GHC10 FS,00MKG20 FS,10SGJ-02-10 FS,00GHD-02-10 FS,00SCA10 FS,00SGM-01-10 FS,00PUN10 FS,00GKB-02-10 FS,00PAA10 FS,00SGA-01-10 FS,00GHC-02-20 FS,10LCA-02-10 FS,10CFE10 FS,10HSJ100 FS","10LBC20,10PCB10,00SCA110,10EK10,GKB10,10GM-01-10,00GA10,FSS22.1060,00UPR10,10PAB-02-10,10QCB20,10SGC-02-10,00GHD-110,10PUR10,10SGA-02-10,00MBH20,00LAB20,10LBA80-20,10PAH10,A3220,00GM-03-10,10GHC10,00MKG20,10SGJ-02-10,00GHD-02-10,00SCA10,00SGM-01-10,00PUN10,00GKB-02-10,00PAA10,00SGA-01-10,00GHC-02-20,10LCA-02-10,10CFE10,10HSJ100",178,218,178,218,41,50,41,50,43,,"CCGT D1_Integrated Programme Schedule;M&E;Construction;Civil Handover Dates",1,35,0.0000003519,0.0703967447,0.0002034588,0,1.0,0.0000812387,0.0068493151,0.1076923077,0.00053125,0.1806788512,0.0006435006,0.0,1.0,0.0
1.3.1.2-7,KD_B02,"B2 - Construct Duct Bank Underneath the Diffuser",7112,"CCGTD1_IPS",TT_FinMile,"58324",-,-,-,100,TK_Complete,02/04/2018,07/02/2018,02/04/2018,07/02/2018,"A1010 FS","A1010","10MBR1010 FS","10MBR1010",139,168,139,168,32,39,32,39,24,,"CCGT D1_Integrated Programme Schedule;M&E;Construction;Civil Handover Dates",1,1,0.0000000311,0.003051882,0.0002034588,0,1.0,0.0000812387,0.0068493151,0.0030769231,0.000046875,0.0078328982,0.0006435006,0.0,1.0,0.0
1.3.1.2-8,KD_B05,"B5 - Construct Condensate Pit",7112,"CCGTD1_IPS",TT_FinMile,"58324",-,-,-,100,TK_Complete,31/12/2018,28/12/2018,31/12/2018,28/12/2018,"A1010 FS","A1010","10LCA-02-10 FS,10LCA10 FS","10LCA-02-10,10LCA10",178,215,178,215,41,50,41,50,43,,"CCGT D1_Integrated Programme Schedule;M&E;Construction;Civil Handover Dates",1,2,0.0000000207,0.0063072228,0.0002034588,0,1.0,0.0000812387,0.0068493151,0.0061538462,0.00003125,0.0161879896,0.0006435006,0.0,1.0,0.0
1.3.1.2-9,KD_B01,"B1 - Complete Foundation Structures and Pile Caps for Stack, Diffuser and HRSG Main Plant with Lift and Staircase",7112,"CCGTD1_IPS",TT_FinMile,"58324",-,-,-,100,TK_Complete,05/03/2018,08/03/2018,05/03/2018,08/03/2018,"A1010 FS","A1010","HRS09.1030 FS,ECS20.1180 FS,A1910 FS,A1900 FS,10MBR1010 FS,ECS20.1190 FS","HRS09.1030,ECS20.1180,A1910,A1900,10MBR1010,ECS20.1190",135,172,135,172,31,40,31,40,21,,"CCGT D1_Integrated Programme Schedule;M&E;Construction;Civil Handover Dates",1,6,0.0000003016,0.0185147508,0.0002034588,0,1.0,0.0000812387,0.0068493151,0.0184615385,0.0004552083,0.0475195822,0.0006435006,0.0,1.0,0.0
1.3.1.2-10,KD_B03,"B3 - Construct temp.pad foundation for heavy lift crane & temp.H/O Area1a for M&E Contractor (Test Complete by KSS)",7112,"CCGTD1_IPS",TT_FinMile,"58324",-,-,-,100,TK_Complete,26/06/2018,07/06/2018,26/06/2018,07/06/2018,"A1010 FS","A1010","HRS10.1010 FS,HRS10.1020 FS,HRS10.1060 FS","HRS10.1010,HRS10.1020,HRS10.1060",151,185,151,185,35,43,35,43,31,,"CCGT D1_Integrated Programme Schedule;M&E;Construction;Civil Handover Dates",1,3,0.000000107,0.0160732452,0.0002034588,0,1.0,0.0000812387,0.0068493151,0.0092307692,0.0001614583,0.0412532637,0.0006435006,0.0,1.0,0.0
1.3.1.2-11,KD_B06,"B6 - Construct Turboset foundation and supporting pile cap (Completion of Foundation Repair by Civil Contractor)",7112,"CCGTD1_IPS",TT_FinMile,"58324",-,-,-,100,TK_Complete,01/06/2018,14/06/2018,01/06/2018,14/06/2018,"A1010 FS,SP1MA-3-80 FS","A1010,SP1MA-3-80","10MBA1000 FS,10MAL10 FS,10MAJ10 FS,10MAV10 FS,10MKA1010 FS,10MBR1000 FS,10MAW10 FS,10MA-1110 FS,10MKA1020 FS,10MAX10 FS","10MBA1000,10MAL10,10MAJ10,10MAV10,10MKA1010,10MBR1000,10MAW10,10MA-1110,10MKA1020,10MAX10",148,186,148,186,34,43,34,43,29,,"CCGT D1_Integrated Programme Schedule;M&E;Construction;Civil Handover Dates",2,10,0.0000054291,0.0895218718,0.0004069176,0,1.0,0.0000812387,0.0136986301,0.0307692308,0.0081953125,0.2297650131,0.0012870013,0.0,1.0,0.0
1.3.1.2-12,KD_C07,"C7 - Complete ALL civil works incl. foundations, pile cap, blast walls & hard standings for Generator Transformer Area",7112,"CCGTD1_IPS",TT_FinMile,"58324",-,-,-,100,TK_Complete,01/04/2019,16/02/2019,01/04/2019,16/02/2019,"A1010 FS","A1010","10BAT20 FS,10BAT10 FS,10BZL-03-10 FS,10BA50 FS,00BAW-01-20 FS,10GM-01-10 FS,101BBT20 FS,10BAT30 FS","10BAT20,10BAT10,10BZL-03-10,10BA50,00BAW-01-20,10GM-01-10,101BBT20,10BAT30",191,222,191,222,44,51,44,51,49,,"CCGT D1_Integrated Programme Schedule;M&E;Construction;Civil Handover Dates",1,8,0.0000010385,0.0248219736,0.0002034588,0,1.0,0.0000812387,0.0068493151,0.0246153846,0.0015677083,0.0637075718,0.0006435006,0.0,1.0,0.0
1.3.1.2-13,KD_C02,"C2 - Complete ALL building works incl. roof & cladding surrounding & above Turboset main equipment area",7112,"CCGTD1_IPS",TT_FinMile,"58324",-,-,-,100,TK_Complete,02/07/2020,30/04/2019,02/07/2020,30/04/2019,"A1010 FS","A1010","","",257,232,257,232,60,54,60,54,91,,"CCGT D1_Integrated Programme Schedule;M&E;Construction;Civil Handover Dates",1,0,0.0,0.0,0.0002034588,0,1.0,0.0000812387,0.0068493151,0.0,0.0,0.0,0.0006435006,0.0,1.0,0.0
1.3.1.2-14,KD_C04,"C4 - Install and T&C two 250t O/H cranes within Turbine Hall and H/O to M&E Contractor",7112,"CCGTD1_IPS",TT_FinMile,"58324",-,-,-,100,TK_Complete,31/08/2018,31/08/2018,31/08/2018,31/08/2018,"SI1SMM4A25 FS,A1010 FS,SI1PAA4-50 FS,SI1SMM4-25 FS,SI1MAG4-40 FS","SI1SMM4A25,A1010,SI1PAA4-50,SI1SMM4-25,SI1MAG4-40","10MBV1090 FS,10MAW10 FS,10BA10 FS,10MAX10 FS,10MKB200 FS,10MBN10 FS,10MKF10 FS,10MA-1110 FS,10MAV10 FS,10MBU10 FS,10MBX2x05 FS,00MBU10 FS,10MBA18-100 FS,10MBA5x05 FS,10MAJ10 FS,10MBL1020 FS,10MBP20 FS,10MA1400 FS,10MBR1000 FS,10MBH10 FS,10MBV1000 FS,10MBA1000 FS,10MKB30 FS,10MBX05 FS,10MAA-1010 FS,10MKW10 FS,10MKA1000 FS,10MBL1100 FS,10MAV1001 FS,10MBL1000 FS,10MA-1290 FS,10MBA1020 FS","10MBV1090,10MAW10,10BA10,10MAX10,10MKB200,10MBN10,10MKF10,10MA-1110,10MAV10,10MBU10,10MBX2x05,00MBU10,10MBA18-100,10MBA5x05,10MAJ10,10MBL1020,10MBP20,10MA1400,10MBR1000,10MBH10,10MBV1000,10MBA1000,10MKB30,10MBX05,10MAA-1010,10MKW10,10MKA1000,10MBL1100,10MAV1001,10MBL1000,10MA-1290,10MBA1020",161,198,161,198,37,46,37,46,36,,"CCGT D1_Integrated Programme Schedule;M&E;Construction;Civil Handover Dates",5,32,0.000089479,0.1082400814,0.001017294,0,1.0,0.0000812387,0.0342465753,0.0984615385,0.1350703125,0.2778067885,0.0032175032,0.0,1.0,0.0
1.3.1.2-15,KD_D05,"D5 - Construct Boiler Blow Down Pit",7112,"CCGTD1_IPS",TT_FinMile,"58324",-,-,-,100,TK_Complete,31/12/2018,10/11/2018,31/12/2018,10/11/2018,"A1010 FS","A1010","A1910 FS,A1900 FS,10LAC05 FS","A1910,A1900,10LAC05",178,208,178,208,41,48,41,48,43,,"CCGT D1_Integrated Programme Schedule;M&E;Construction;Civil Handover Dates",1,3,0.0000000759,0.0126144456,0.0002034588,0,1.0,0.0000812387,0.0068493151,0.0092307692,0.0001145833,0.0323759791,0.0006435006,0.0,1.0,0.0
1.3.1.2-16,KD_D06,"D6 - Complete foundations and plinths for ALL equipment, pipe bridge and sleeper way to the west of HRSG Area",7112,"CCGTD1_IPS",TT_FinMile,"58324",-,-,-,100,TK_Complete,31/10/2018,31/10/2018,31/10/2018,31/10/2018,"A1010 FS","A1010","10LCA-02-10 FS,ECS20.1110 FS,00GM-01-100 FS,10QCB20 FS,ECS20.1050 FS,ECS20.1070 FS,10QU20 FS,10GM-02-10 FS,10SFC-10 FS,10SEE-10 FS,00EG-01-10 FS,A1900 FS,10EK10 FS,A2380 FS,10QCC20 FS,00STG20 FS,10LAC05 FS,10LAB10 FS,10GM-01-10 FS,00SCA10 FS,10QCD20 FS,10BBT10 FS,00GM-03-10 FS,10MBA4x10 FS,HRS10.1080 FS,10PCB10 FS,GKB10 FS,00GA10 FS,FSS22.1060 FS,00UPR10 FS,10PAB-02-10 FS,00GHD-110 FS,10PUR10 FS,10PAH10 FS,10GHC10 FS,10SGJ-02-10 FS,00GHD-02-10 FS,00PUN10 FS,00GKB-02-10 FS,00PAA10 FS,00SGA-01-10 FS,00GHC-02-20 FS,10LDK-10 FS,10HAA10 FS,00GM-01-210 FS","10LCA-02-10,ECS20.1110,00GM-01-100,10QCB20,ECS20.1050,ECS20.1070,10QU20,10GM-02-10,10SFC-10,10SEE-10,00EG-01-10,A1900,10EK10,A2380,10QCC20,00STG20,10LAC05,10LAB10,10GM-01-10,00SCA10,10QCD20,10BBT10,00GM-03-10,10MBA4x10,HRS10.1080,10PCB10,GKB10,00GA10,FSS22.1060,00UPR10,10PAB-02-10,00GHD-110,10PUR10,10PAH10,10GHC10,10SGJ-02-10,00GHD-02-10,00PUN10,00GKB-02-10,00PAA10,00SGA-01-10,00GHC-02-20,10LDK-10,10HAA10,00GM-01-210",170,206,170,206,39,48,39,48,38,,"CCGT D1_Integrated Programme Schedule;M&E;Construction;Civil Handover Dates",1,45,0.0000004371,0.1043743642,0.0002034588,0,1.0,0.0000812387,0.0068493151,0.1384615385,0.0006598524,0.2678851175,0.0006435006,0.0,1.0,0.0
1.3.1.2-17,KD_D04,"D4 - Construct Duct Bank between Switchgear Building and Generator Transformer Area",7112,"CCGTD1_IPS",TT_FinMile,"58324",-,-,-,100,TK_Complete,02/07/2020,12/02/2019,02/07/2020,12/02/2019,"A1010 FS","A1010","","",257,221,257,221,60,51,60,51,91,,"CCGT D1_Integrated Programme Schedule;M&E;Construction;Civil Handover Dates",1,0,0.0,0.0,0.0002034588,0,1.0,0.0000812387,0.0068493151,0.0,0.0,0.0,0.0006435006,0.0,1.0,0.0
1.3.1.2-18,KD_D07,"D7 - Complete foundations and bund walls for Outdoor Dirty and Clean Oil Tanks",7112,"CCGTD1_IPS",TT_FinMile,"58324",-,-,-,100,TK_Complete,02/07/2020,25/04/2019,02/07/2020,25/04/2019,"A1010 FS","A1010","10GM-02-20 FS","10GM-02-20",257,231,257,231,60,54,60,54,91,,"CCGT D1_Integrated Programme Schedule;M&E;Construction;Civil Handover Dates",1,1,0.0000000983,0.0018311292,0.0002034588,0,1.0,0.0000812387,0.0068493151,0.0030769231,0.0001484375,0.0046997389,0.0006435006,0.0,1.0,0.0
1.3.1.2-19,KD_D08,"D8 - Complete foundations and plinths for LV Auxiliary Power Transformers",7112,"CCGTD1_IPS",TT_FinMile,"58324",-,-,-,100,TK_Complete,02/07/2020,04/02/2019,02/07/2020,04/02/2019,"A1010 FS","A1010","10BHT-20 FS,10SEE-10 FS,10SFC-10 FS,10SFC-20 FS,10BBT10 FS,10SEE-20 FS","10BHT-20,10SEE-10,10SFC-10,10SFC-20,10BBT10,10SEE-20",257,220,257,220,60,51,60,51,91,,"CCGT D1_Integrated Programme Schedule;M&E;Construction;Civil Handover Dates",1,6,0.0000000945,0.016276704,0.0002034588,0,1.0,0.0000812387,0.0068493151,0.0184615385,0.0001427083,0.0417754569,0.0006435006,0.0,1.0,0.0
1.3.1.2-20,KD_D10,"D10 - Complete foundation and plinths for Gas Final Filter Equipment",7112,"CCGTD1_IPS",TT_FinMile,"58324",-,-,-,100,TK_Complete,02/07/2020,30/04/2019,02/07/2020,30/04/2019,"A1010 FS","A1010","10EKT20-10 FS,10EK10 FS,00GM-01-250 FS,00EK09 FS,00EK10 FS","10EKT20-10,10EK10,00GM-01-250,00EK09,00EK10",257,232,257,232,60,54,60,54,91,,"CCGT D1_Integrated Programme Schedule;M&E;Construction;Civil Handover Dates",1,5,0.0000003312,0.0105798576,0.0002034588,0,1.0,0.0000812387,0.0068493151,0.0153846154,0.0005,0.027154047,0.0006435006,0.0,1.0,0.0
1.3.1.2-21,KD_D01,"D1 - Complete ALL remaining platforms within Turbine Hall Building (civil scope)",7112,"CCGTD1_IPS",TT_FinMile,"58324",-,-,-,100,TK_Complete,31/12/2018,31/12/2018,31/12/2018,31/12/2018,"A1010 FS","A1010","","",178,215,178,215,41,50,41,50,43,,"CCGT D1_Integrated Programme Schedule;M&E;Construction;Civil Handover Dates",1,0,0.0,0.0,0.0002034588,0,1.0,0.0000812387,0.0068493151,0.0,0.0,0.0,0.0006435006,0.0,1.0,0.0
1.3.1.2-22,KD_D11,"D11 - Complete foundations and plinths for Close Cooling Water Structure",7112,"CCGTD1_IPS",TT_FinMile,"58324",-,-,-,100,TK_Complete,02/07/2020,04/03/2019,02/07/2020,04/03/2019,"A1010 FS","A1010","10PAB-02-10 FS,10PGB1010 FS,10PGB1020 FS,10MKF20 FF,10PCB20 FS","10PAB-02-10,10PGB1010,10PGB1020,10MKF20,10PCB20",257,224,257,224,60,52,60,52,91,,"CCGT D1_Integrated Programme Schedule;M&E;Construction;Civil Handover Dates",1,5,0.0000002024,0.0154628688,0.0002034588,0,1.0,0.0000812387,0.0068493151,0.0153846154,0.0003055556,0.0396866841,0.0006435006,0.0,1.0,0.0
1.3.1.2-23,KD_D02,"D2 - Complete ALL building works for Switchgear Block",7112,"CCGTD1_IPS",TT_FinMile,"58324",-,-,-,100,TK_Complete,02/07/2020,14/02/2019,02/07/2020,14/02/2019,"A1010 FS","A1010","10SEE-20 FS,10BBE10 FS,00BHV10 FS,10BA10 FS,10BF10 FS,10MKB200 FS,CP1BZP7D15 FS,CP-BZK7E25 FS,10AC10 FF,CP-BZK7I25 FS,10CY10 FS,CP1BZK7J25 FS,CP-BZK7H25 FS,CP1BZP7C15 FS,CP1BZP7A15 FS,CP-BZP7A15 FS,CP-BZK7F25 FS,CP1BZK7A25 FS,CP1BZK7D25 FS,10SFC-20 FS,10MKB30 FS,10BH10 FS,10BT10 FS,CP1BZP7F15 FS,CP-BZK7B2 FS,CP-BZK7C25 FS,10AC10 FS,CP1BZK7B25 FS,CP-BZK7G25 FS,10CP-AA10 FS,FSS22.1060 FS,10MBL1100 FS,00CY10 FS,00BZL-02-10 FS,SC1230 FS,SC1180 FS,SC1190 FS,SC1240 FS","10SEE-20,10BBE10,00BHV10,10BA10,10BF10,10MKB200,CP1BZP7D15,CP-BZK7E25,10AC10,CP-BZK7I25,10CY10,CP1BZK7J25,CP-BZK7H25,CP1BZP7C15,CP1BZP7A15,CP-BZP7A15,CP-BZK7F25,CP1BZK7A25,CP1BZK7D25,10SFC-20,10MKB30,10BH10,10BT10,CP1BZP7F15,CP-BZK7B2,CP-BZK7C25,10AC10,CP1BZK7B25,CP-BZK7G25,10CP-AA10,FSS22.1060,10MBL1100,00CY10,00BZL-02-10,SC1230,SC1180,SC1190,SC1240",257,221,257,221,60,51,60,51,91,,"CCGT D1_Integrated Programme Schedule;M&E;Construction;Civil Handover Dates",1,37,0.0000018235,0.0600203459,0.0002034588,0,1.0,0.0000812387,0.0068493151,0.1138461538,0.0027526042,0.1540469974,0.0006435006,0.0,1.0,0.0
1.3.1.2-24,KD_D09,"D9 - Complete foundation and plinths for Emergency Power Generator",7112,"CCGTD1_IPS",TT_FinMile,"58324",-,-,-,100,TK_Complete,02/07/2020,16/07/2019,02/07/2020,16/07/2019,"A1010 FS","A1010","00XKA10 FS,10AC10 FS,00SGM-01-10 FS","00XKA10,10AC10,00SGM-01-10",257,243,257,243,60,56,60,56,91,,"CCGT D1_Integrated Programme Schedule;M&E;Construction;Civil Handover Dates",1,3,0.0000000828,0.0156663276,0.0002034588,0,1.0,0.0000812387,0.0068493151,0.0092307692,0.000125,0.0402088773,0.0006435006,0.0,1.0,0.0
1.3.1.2-25,KD_E02,"E2 - Complete ALL outdoor pipe trenches including 10UEZ01, 10UEZ02 and 10UGZ",7112,"CCGTD1_IPS",TT_FinMile,"58324",-,-,-,100,TK_Complete,02/07/2020,14/02/2019,02/07/2020,14/02/2019,"A1010 FS","A1010","00GHC-01-20 FS,10BBE20 FS,00EG-01-10 FS,00EG-02-10 FS,00EG-02-20 FS,00GHC-02-20 FF,00GHC-01-10 FS","00GHC-01-20,10BBE20,00EG-01-10,00EG-02-10,00EG-02-20,00GHC-02-20,00GHC-01-10",257,221,257,221,60,51,60,51,91,,"CCGT D1_Integrated Programme Schedule;M&E;Construction;Civil Handover Dates",1,7,0.0000003485,0.0170905392,0.0002034588,0,1.0,0.0000812387,0.0068493151,0.0215384615,0.0005260417,0.0438642298,0.0006435006,0.0,1.0,0.0
1.3.1.2-26,KD_E01,"E1 - Complete foundations and plinths for Effluent Storage Tanks",7112,"CCGTD1_IPS",TT_FinMile,"58324",-,-,-,100,TK_Complete,02/07/2020,25/04/2019,02/07/2020,25/04/2019,"A1010 FS","A1010","00GM-01-240 FS","00GM-01-240",257,231,257,231,60,54,60,54,91,,"CCGT D1_Integrated Programme Schedule;M&E;Construction;Civil Handover Dates",1,1,0.000000069,0.0008138352,0.0002034588,0,1.0,0.0000812387,0.0068493151,0.0030769231,0.0001041667,0.0020887728,0.0006435006,0.0,1.0,0.0
1.3.1.2-27,KD_E03,"E3 - Complete foundation & plinths for CEMS Panels, Compressed Air Sys, N2 Blanket Sys, struc.for emerg.CO2 &",7112,"CCGTD1_IPS",TT_FinMile,"58324",-,-,-,100,TK_Complete,31/12/2018,31/12/2018,31/12/2018,31/12/2018,"A1010 FS","A1010","FSS22.1060 FS,00SCA10 FS,10SGJ-02-10 FS,00SCA110 FS,10CFE10 FF,10LBC20 FS,10PCB10 FS,10QCD20 FS,10EK10 FS,GKB10 FS,10GM-01-10 FS,00GA10 FS,00UPR10 FS,10PAB-02-10 FS,10QCB20 FS,10SGC-02-10 FS,00GHD-110 FS,10PUR10 FS,10SGA-02-10 FS,00MBH20 FS,00LAB20 FS,10LBA80-20 FS,10QCC20 FS,10PAH10 FS,10QU20 FS,A3220 FS,00GM-03-10 FS,10GHC10 FS,00MKG20 FS,00GHD-02-10 FS,00STG20 FS,00SGM-01-10 FS,00PUN10 FS,00GKB-02-10 FS,00PAA10 FS,00SGA-01-10 FS,10LCA-02-10 FS","FSS22.1060,00SCA10,10SGJ-02-10,00SCA110,10CFE10,10LBC20,10PCB10,10QCD20,10EK10,GKB10,10GM-01-10,00GA10,00UPR10,10PAB-02-10,10QCB20,10SGC-02-10,00GHD-110,10PUR10,10SGA-02-10,00MBH20,00LAB20,10LBA80-20,10QCC20,10PAH10,10QU20,A3220,00GM-03-10,10GHC10,00MKG20,00GHD-02-10,00STG20,00SGM-01-10,00PUN10,00GKB-02-10,00PAA10,00SGA-01-10,10LCA-02-10",178,215,178,215,41,50,41,50,43,,"CCGT D1_Integrated Programme Schedule;M&E;Construction;Civil Handover Dates",1,37,0.0000002484,0.0726347915,0.0002034588,0,1.0,0.0000812387,0.0068493151,0.1138461538,0.000375,0.1864229765,0.0006435006,0.0,1.0,0.0
1.3.1.2-28,KD_E04,"E4 - Complete foundation & plinths for Fuel Gas Purge Air, Gas Receiving Station, Fuel Gas Blending System",7112,"CCGTD1_IPS",TT_FinMile,"58324",-,-,-,100,TK_Complete,02/07/2020,14/02/2019,02/07/2020,14/02/2019,"A1010 FS","A1010","10EK10 FS,10LBC20 FS,10PCB10 FS,00SCA110 FS,GKB10 FS,00GA10 FS,FSS22.1060 FS,00UPR10 FS,10PAB-02-10 FS,00GHD-110 FS,10SGA-02-10 FS,00MBH20 FS,00LAB20 FS,10LBA80-20 FS,10PAH10 FS,A3220 FS,00GM-03-10 FS,10GHC10 FS,00MKG20 FS,10SGJ-02-10 FS,00GHD-02-10 FS,00SCA10 FS,00SGM-01-10 FS,00PUN10 FS,00GKB-02-10 FS,00PAA10 FS,00GHC-02-20 FS,10LCA-02-10 FS","10EK10,10LBC20,10PCB10,00SCA110,GKB10,00GA10,FSS22.1060,00UPR10,10PAB-02-10,00GHD-110,10SGA-02-10,00MBH20,00LAB20,10LBA80-20,10PAH10,A3220,00GM-03-10,10GHC10,00MKG20,10SGJ-02-10,00GHD-02-10,00SCA10,00SGM-01-10,00PUN10,00GKB-02-10,00PAA10,00GHC-02-20,10LCA-02-10",257,221,257,221,60,51,60,51,91,,"CCGT D1_Integrated Programme Schedule;M&E;Construction;Civil Handover Dates",1,28,0.0,0.0604272635,0.0002034588,0,1.0,0.0000812387,0.0068493151,0.0861538462,0.0,0.1550913838,0.0006435006,0.0,1.0,0.0
1.3.1.2-29,KD_E07,"E7 - Complete ALL building services for Switchgear Block incl' T&C",7112,"CCGTD1_IPS",TT_FinMile,"58324",-,-,-,100,TK_Complete,02/07/2020,14/02/2019,02/07/2020,14/02/2019,"A1010 FS","A1010","CP1BZL7A15 FS,10BZL-03-10 FS,00BZL-01-10 FS,10BZL-02-10 FS,10CY10 FS,00BZL-02-10 FS","CP1BZL7A15,10BZL-03-10,00BZL-01-10,10BZL-02-10,10CY10,00BZL-02-10",257,221,257,221,60,51,60,51,91,,"CCGT D1_Integrated Programme Schedule;M&E;Construction;Civil Handover Dates",1,6,0.0000001415,0.0067141404,0.0002034588,0,1.0,0.0000812387,0.0068493151,0.0184615385,0.0002135417,0.017232376,0.0006435006,0.0,1.0,0.0
1.3.1.2-30,KD_F02,"F2 - Complete Oil Contaminated Drainage System incl' external drainage, oil interceptor and pipe trecnhes",7112,"CCGTD1_IPS",TT_FinMile,"58324",-,-,-,100,TK_Complete,02/07/2020,14/02/2019,02/07/2020,14/02/2019,"A1010 FS","A1010","10GM-02-10 FS","10GM-02-10",257,221,257,221,60,51,60,51,92,,"CCGT D1_Integrated Programme Schedule;M&E;Construction;Civil Handover Dates",1,1,0.0000000246,0.0026449644,0.0002034588,0,1.0,0.0000812387,0.0068493151,0.0030769231,0.0000371094,0.0067885117,0.0006435006,0.0,1.0,0.0
1.3.1.2-31,KD_F01,"F1 - Complete Chem.Contaminated Drainage Sys incl. pipe trenches, Effluent Disposal U/G struc, Neutralization Sys",7112,"CCGTD1_IPS",TT_FinMile,"58324",-,-,-,100,TK_Complete,02/07/2020,25/04/2019,02/07/2020,25/04/2019,"A1010 FS","A1010","","",257,231,257,231,60,54,60,54,92,,"CCGT D1_Integrated Programme Schedule;M&E;Construction;Civil Handover Dates",1,0,0.0,0.0,0.0002034588,0,1.0,0.0000812387,0.0068493151,0.0,0.0,0.0,0.0006435006,0.0,1.0,0.0
1.3.1.2-32,KD_F07,"F6 - Complete Cooling Water Pumping Station and Diversion Culvert (temp access available per CLP 27 Apr 18)",7112,"CCGTD1_IPS",TT_FinMile,"58324",-,-,-,100,TK_Complete,02/07/2020,15/04/2019,02/07/2020,15/04/2019,"A1010 FS","A1010","00PAA10 FS,10PAB-01-110 FS,00UPR10 FS,00PUN10 FS,00PUS10 FS","00PAA10,10PAB-01-110,00UPR10,00PUN10,00PUS10",257,230,257,230,60,53,60,53,92,,"CCGT D1_Integrated Programme Schedule;M&E;Construction;Civil Handover Dates",1,5,0.0000003933,0.0136317396,0.0002034588,0,1.0,0.0000812387,0.0068493151,0.0153846154,0.00059375,0.0349869452,0.0006435006,0.0,1.0,0.0
1.3.1.2-33,KD_G01,"G1 - Complete Existing Supplementary Cooling Water (SCW) Intake Culvert Modification",7112,"CCGTD1_IPS",TT_FinMile,"58324",-,-,-,100,TK_Complete,02/07/2020,26/12/2019,02/07/2020,26/12/2019,"A1010 FS","A1010","TOP1430 FS","TOP1430",257,266,257,266,60,62,60,62,92,,"CCGT D1_Integrated Programme Schedule;M&E;Construction;Civil Handover Dates",1,1,0.0000000552,0.0022380468,0.0002034588,0,1.0,0.0000812387,0.0068493151,0.0030769231,0.0000833333,0.0057441253,0.0006435006,0.0,1.0,0.0
1.3.1.2-34,TPAD0010,"Temp Pad Foundation - Construct pad foundation for HRSG Heavy lift crane",7112,"CCGTD1_IPS",TT_FinMile,"58324",-,-,-,100,TK_Complete,01/03/2018,16/03/2018,01/03/2018,16/03/2018,"A1010 FS","A1010","","",135,174,135,174,31,40,31,40,21,,"CCGT D1_Integrated Programme Schedule;M&E;Construction;Civil Handover Dates",1,0,0.0,0.0,0.0002034588,0,1.0,0.0000812387,0.0068493151,0.0,0.0,0.0,0.0006435006,0.0,1.0,0.0
1.3.1.2-35,KD_F7,"F5-Install North Section of UGP Large Dia. Intake&Discharge  CWP & Finish Grid. for Machinery",7112,"CCGTD1_IPS",TT_FinMile,"58324",-,-,-,100,TK_Complete,02/07/2020,07/06/2019,02/07/2020,07/06/2019,"","","00GM-01-100 FS","00GM-01-100",257,238,257,238,60,55,60,55,92,,"CCGT D1_Integrated Programme Schedule;M&E;Construction;Civil Handover Dates",0,1,0.0,0.0014242116,0.0,0,1.0,0.0000812387,0.0,0.0030769231,0.0,0.0036553525,0.0,0.0,1.0,0.0
1.3.1.2-36,KD_C17,"Turbine Bldg. GL 5-7 Mechanical Annex",7112,"CCGTD1_IPS",TT_FinMile,"58324",-,-,-,100,TK_Complete,31/12/2018,28/12/2018,31/12/2018,28/12/2018,"","","10LCA10 FS,10LD-10 FS,10LDK-10 FS,A1790 FS,A1680 FS,A1760 FS,A1800 FS,PMS14.1050 FS,10MBL1100 FS,10MAW10 FS,10BA20 FS,10MKB90 FS,00BAW-01-20 FS,10CP-ST-10 FS,00GHC-02-20 FS,GKB10 FS,10GHC10 FS,10LBA10-20 FS,10LBC20 FS,10LBA80-20 FS,00GHD-110 FS,10LBG20 FS,10MBX05 FS,10SEE-10 FS,10MKG10 FS,10MKG20 FS,00MBU10 FS,10MBN10 FS,10MBL1130 FS","10LCA10,10LD-10,10LDK-10,A1790,A1680,A1760,A1800,PMS14.1050,10MBL1100,10MAW10,10BA20,10MKB90,00BAW-01-20,10CP-ST-10,00GHC-02-20,GKB10,10GHC10,10LBA10-20,10LBC20,10LBA80-20,00GHD-110,10LBG20,10MBX05,10SEE-10,10MKG10,10MKG20,00MBU10,10MBN10,10MBL1130",178,215,178,215,41,50,41,50,43,,"CCGT D1_Integrated Programme Schedule;M&E;Construction;Civil Handover Dates",0,29,0.0,0.0899287894,0.0,0,1.0,0.0000812387,0.0,0.0892307692,0.0,0.2308093995,0.0,0.0,1.0,0.0
1.3.1.2-37,KD_C27,"Turbine Bldg. GL 7-10 Condensate Polishing Plant",7112,"CCGTD1_IPS",TT_FinMile,"58324",-,-,-,100,TK_Complete,02/07/2020,15/02/2019,02/07/2020,15/02/2019,"","","A3370 FS,A1800 FS,10BA20 FS,10BZL-01-10 FS,00GHD-02-10 FS,00GKB-02-10 FS,10MAJ10 FS,00MBU10 FS,10LDK-10 FS,10LD-10 FS","A3370,A1800,10BA20,10BZL-01-10,00GHD-02-10,00GKB-02-10,10MAJ10,00MBU10,10LDK-10,10LD-10",257,222,257,222,60,51,60,51,92,,"CCGT D1_Integrated Programme Schedule;M&E;Construction;Civil Handover Dates",0,10,0.0,0.0301119023,0.0,0,1.0,0.0000812387,0.0,0.0307692308,0.0,0.0772845953,0.0,0.0,1.0,0.0
1.3.1.2-38,KD_H01,"Completion of West of HRSG Foundations (incl. Condenstae Recirc Pumps)",7112,"CCGTD1_IPS",TT_FinMile,"58324",-,-,-,100,TK_Complete,31/12/2018,31/12/2018,31/12/2018,31/12/2018,"","","10HAA10 FS,10LCA10 FS,10LAB10 FS,00STG20 FS,10LAC05 FS,10QCC20 FS,10QCD20 FS,10QU20 FS,10CP-WS10 FS","10HAA10,10LCA10,10LAB10,00STG20,10LAC05,10QCC20,10QCD20,10QU20,10CP-WS10",178,215,178,215,41,50,41,50,43,,"CCGT D1_Integrated Programme Schedule;M&E;Construction;Civil Handover Dates",0,9,0.0,0.0229908444,0.0,0,1.0,0.0000812387,0.0,0.0276923077,0.0,0.0590078329,0.0,0.0,1.0,0.0
1.3.1.2-39,KD_H02,"Complete GT Diffuser Area Foundations",7112,"CCGTD1_IPS",TT_FinMile,"58324",-,-,-,100,TK_Complete,02/07/2020,28/02/2019,02/07/2020,28/02/2019,"","","10MBH10 FS,10MBU10 FS,10MBR1000 FS","10MBH10,10MBU10,10MBR1000",257,223,257,223,60,52,60,52,92,,"CCGT D1_Integrated Programme Schedule;M&E;Construction;Civil Handover Dates",0,3,0.0,0.0099694812,0.0,0,1.0,0.0000812387,0.0,0.0092307692,0.0,0.0255874674,0.0,0.0,1.0,0.0
1.3.1.2-40,KD_H03,"Completion of Neutralization Tank",7112,"CCGTD1_IPS",TT_FinMile,"58324",-,-,-,100,TK_Complete,02/07/2020,31/12/2018,02/07/2020,31/12/2018,"","","00GM-03-10 FS","00GM-03-10",257,215,257,215,60,50,60,50,92,,"CCGT D1_Integrated Programme Schedule;M&E;Construction;Civil Handover Dates",0,1,0.0,0.0046795524,0.0,0,1.0,0.0000812387,0.0,0.0030769231,0.0,0.0120104439,0.0,0.0,1.0,0.0
1.3.1.2-41,KD_B12,"HRSG East Side Urea Decomposition Chamber Foundation",7112,"CCGTD1_IPS",TT_FinMile,"58324",-,-,-,100,TK_Complete,02/07/2020,28/10/2019,02/07/2020,28/10/2019,"","","10HSJ100 FS","10HSJ100",257,258,257,258,60,60,60,60,92,,"CCGT D1_Integrated Programme Schedule;M&E;Construction;Civil Handover Dates",0,1,0.0,0.0026449644,0.0,0,1.0,0.0000812387,0.0,0.0030769231,0.0,0.0067885117,0.0,0.0,1.0,0.0
1.3.1.2-42,10MKB90,"Erect Annex Hall D5/D9/D12 Secondary Steel Structure",7112,"CCGTD1_IPS",TT_Task,"58324",-,-,-,100,TK_Complete,21/01/2019,21/01/2019,22/03/2019,15/05/2019,"KD_C17 FS","KD_C17","10MKB30 FS,10MAL20 FS,10MBN10 FS,10MBX2x10 FS,10LBG20 FS,10MBA5x05 FS,10MBX05 FS,10LBA10-20 FS,00LBG10 FS,10MBP10 FS","10MKB30,10MAL20,10MBN10,10MBX2x10,10LBG20,10MBA5x05,10MBX05,10LBA10-20,00LBG10,10MBP10",181,218,190,234,42,50,44,54,43,,"CCGT D1_Integrated Programme Schedule;M&E;Construction;Civil Handover Dates",1,10,0.0000027534,0.0382502543,0.0002034588,60,0.0,0.0000873588,0.0068493151,0.0307692308,0.00415625,0.0981723238,0.0006435006,0.134529148,0.0,0.0025076953
1.3.1.3,58323,"Method Statements",7112,"CCGTD1_IPS",WBS,"58320",,,,100,Complete,09/02/2018,10/01/2018,24/09/2018,06/08/2018,,,,,132,164,164,194,30,38,38,45,,,"CCGT D1_Integrated Programme Schedule;M&E;Construction"
1.3.1.3-1,MS1050,"Method Statement - (10MAN) ST Bypass System",7112,"CCGTD1_IPS",TT_Task,"58323",-,-,-,100,TK_Complete,30/08/2018,08/06/2018,24/09/2018,06/08/2018,"","","","",161,186,164,194,37,43,38,45,36,,"CCGT D1_Integrated Programme Schedule;M&E;Construction;Method Statements",0,0,0.0,0.0,0.0,25,0.0,0.0000812387,0.0,0.0,0.0,0.0,0.0,0.0560538117,0.0,0.0
1.3.1.3-2,MS1070,"Method Statement - (10MAG) Condensing System",7112,"CCGTD1_IPS",TT_Task,"58323",-,-,-,100,TK_Complete,10/04/2018,02/03/2018,04/05/2018,30/03/2018,"ENG1070 FS","ENG1070","","",140,172,144,176,32,40,33,41,24,,"CCGT D1_Integrated Programme Schedule;M&E;Construction;Method Statements",1,0,0.0,0.0,0.0006103764,24,0.4,0.0001056471,0.0068493151,0.0,0.0,0.0,0.0019305019,0.0538116592,0.4,0.010001279
1.3.1.3-3,MS1120,"Method Statement - (10MKA) Generator Incl. Bearing System 10 MKD",7112,"CCGTD1_IPS",TT_Task,"58323",-,-,-,100,TK_Complete,26/07/2018,11/06/2018,20/08/2018,26/06/2018,"ENG1120 FS","ENG1120","","",156,186,159,188,36,43,37,44,33,,"CCGT D1_Integrated Programme Schedule;M&E;Construction;Method Statements",1,0,0.0,0.0,0.0006103764,25,1.0,0.000117258,0.0068493151,0.0,0.0,0.0,0.0019305019,0.0560538117,1.0,0.0147588319
1.3.1.3-4,MS2390,"Method Statement - (10HAA) HRSG",7112,"CCGTD1_IPS",TT_Task,"58323",-,-,-,100,TK_Complete,09/02/2018,10/01/2018,22/02/2018,07/03/2018,"A1010 FS","A1010","","",132,164,134,172,30,38,31,40,18,,"CCGT D1_Integrated Programme Schedule;M&E;Construction;Method Statements",1,0,0.0,0.0,0.0002034588,13,0.0,0.0000818635,0.0068493151,0.0,0.0,0.0,0.0006435006,0.0291479821,0.0,0.0002559975
1.3.1.3-5,MS1790,"Method Statement - (10HBK) HRSG Exhaust Gas System",7112,"CCGTD1_IPS",TT_Task,"58323",-,-,-,100,TK_Complete,30/08/2018,02/07/2018,24/09/2018,14/07/2018,"ENG1790 FS","ENG1790","","",161,189,164,191,37,44,38,44,36,,"CCGT D1_Integrated Programme Schedule;M&E;Construction;Method Statements",1,0,0.0,0.0,0.0006103764,25,1.0,0.0001049226,0.0068493151,0.0,0.0,0.0,0.0019305019,0.0560538117,1.0,0.0097044374
1.3.1.4,58322,"Inspection & Test Plans",7112,"CCGTD1_IPS",WBS,"58320",,,,100,Complete,09/02/2018,10/01/2018,25/12/2019,30/11/2019,,,,,132,164,230,263,30,38,53,61,,,"CCGT D1_Integrated Programme Schedule;M&E;Construction"
1.3.1.4-1,ITP1750,"ITP for - (10HAD10) HRSG HP Steam",7112,"CCGTD1_IPS",TT_Task,"58322",-,-,-,100,TK_Complete,17/10/2018,23/02/2018,09/11/2018,28/06/2018,"ENG1750 FS,ENG0000 FS","ENG1750,ENG0000","","",168,171,171,188,39,39,39,44,37,,"CCGT D1_Integrated Programme Schedule;M&E;Construction;Inspection & Test Plans",2,0,0.0,0.0,0.0006103764,23,0.0,0.0001367794,0.0136986301,0.0,0.0,0.0,0.0019305019,0.0515695067,0.0,0.022757703
1.3.1.4-2,ITP1760,"ITP for - (10HAD50) HRSG IP Steam",7112,"CCGTD1_IPS",TT_Task,"58322",-,-,-,100,TK_Complete,17/10/2018,23/02/2018,09/11/2018,28/06/2018,"ENG1760 FS","ENG1760","","",168,171,171,188,39,39,39,44,37,,"CCGT D1_Integrated Programme Schedule;M&E;Construction;Inspection & Test Plans",1,0,0.0,0.0,0.0006103764,23,0.0,0.0001158172,0.0068493151,0.0,0.0,0.0,0.0019305019,0.0515695067,0.0,0.0141684786
1.3.1.4-3,ITP1770,"ITP for - (10HAD80) HRSG LP Steam",7112,"CCGTD1_IPS",TT_Task,"58322",-,-,-,100,TK_Complete,17/10/2018,23/02/2018,09/11/2018,28/06/2018,"ENG1770 FS","ENG1770","","",168,171,171,188,39,39,39,44,37,,"CCGT D1_Integrated Programme Schedule;M&E;Construction;Inspection & Test Plans",1,0,0.0,0.0,0.0006103764,23,0.0,0.0001158172,0.0068493151,0.0,0.0,0.0,0.0019305019,0.0515695067,0.0,0.0141684786
1.3.1.4-4,ITP1790,"ITP for - (10HBK) HRSG Exhaust Gas System",7112,"CCGTD1_IPS",TT_Task,"58322",-,-,-,100,TK_Complete,30/08/2018,12/03/2018,24/09/2018,28/06/2018,"ENG1790 FS","ENG1790","","",161,173,164,188,37,40,38,44,35,,"CCGT D1_Integrated Programme Schedule;M&E;Construction;Inspection & Test Plans",1,0,0.0,0.0,0.0006103764,25,0.0,0.0001049226,0.0068493151,0.0,0.0,0.0,0.0019305019,0.0560538117,0.0,0.0097044374
1.3.1.4-5,ITP1830,"ITP for - (10LCL) HRSG Drains System",7112,"CCGTD1_IPS",TT_Task,"58322",-,-,-,100,TK_Complete,15/08/2018,04/06/2018,07/09/2018,28/06/2018,"ENG1830 FS","ENG1830","","",159,185,162,188,37,43,37,44,34,,"CCGT D1_Integrated Programme Schedule;M&E;Construction;Inspection & Test Plans",1,0,0.0,0.0,0.0006103764,23,0.8,0.0001158172,0.0068493151,0.0,0.0,0.0,0.0019305019,0.0515695067,0.8,0.0141684786
1.3.1.4-6,ITP1840,"ITP for - (10LCA-02) Condensate Supply System incl. Preheater 10HAA10",7112,"CCGTD1_IPS",TT_Task,"58322",-,-,-,100,TK_Complete,01/08/2018,02/06/2018,27/08/2018,16/07/2018,"ENG1840 FS","ENG1840","","",157,185,160,191,36,43,37,44,33,,"CCGT D1_Integrated Programme Schedule;M&E;Construction;Inspection & Test Plans",1,0,0.0,0.0,0.0006103764,26,0.0,0.0000934706,0.0068493151,0.0,0.0,0.0,0.0019305019,0.0582959641,0.0,0.0050119788
1.3.1.4-7,ITP1860,"ITP for - (10LAC) Feedwater Pump",7112,"CCGTD1_IPS",TT_Task,"58322",-,-,-,100,TK_Complete,03/07/2019,02/06/2018,29/07/2019,30/07/2018,"ENG1860 FS","ENG1860","","",205,185,208,193,47,43,48,45,65,,"CCGT D1_Integrated Programme Schedule;M&E;Construction;Inspection & Test Plans",1,0,0.0,0.0,0.0006103764,26,0.0,0.0000934706,0.0068493151,0.0,0.0,0.0,0.0019305019,0.0582959641,0.0,0.0050119788
1.3.1.4-8,ITP1870,"ITP for - (10QCB) Hydrazine Dosing QC",7112,"CCGTD1_IPS",TT_Task,"58322",-,-,-,100,TK_Complete,19/09/2018,29/06/2018,12/10/2018,07/08/2018,"ENG1870 FS","ENG1870","","",164,189,167,194,38,44,39,45,36,,"CCGT D1_Integrated Programme Schedule;M&E;Construction;Inspection & Test Plans",1,0,0.0,0.0,0.0006103764,23,0.0,0.0000922846,0.0068493151,0.0,0.0,0.0,0.0019305019,0.0515695067,0.0,0.0045260418
1.3.1.4-9,ITP1880,"ITP for - (10QCC) Trisodium Phosphate Dosing QC",7112,"CCGTD1_IPS",TT_Task,"58322",-,-,-,100,TK_Complete,19/09/2018,29/06/2018,12/10/2018,07/08/2018,"ENG1880 FS","ENG1880","","",164,189,167,194,38,44,39,45,36,,"CCGT D1_Integrated Programme Schedule;M&E;Construction;Inspection & Test Plans",1,0,0.0,0.0,0.0006103764,23,0.0,0.0000922846,0.0068493151,0.0,0.0,0.0,0.0019305019,0.0515695067,0.0,0.0045260418
1.3.1.4-10,ITP1890,"ITP for - (10QCD) Ammonia Dosing QC",7112,"CCGTD1_IPS",TT_Task,"58322",-,-,-,100,TK_Complete,11/10/2018,29/06/2018,05/11/2018,07/08/2018,"ENG1890 FS","ENG1890","","",167,189,170,194,39,44,39,45,37,,"CCGT D1_Integrated Programme Schedule;M&E;Construction;Inspection & Test Plans",1,0,0.0,0.0,0.0006103764,25,0.0,0.0000930807,0.0068493151,0.0,0.0,0.0,0.0019305019,0.0560538117,0.0,0.0048522187
1.3.1.4-11,ITP1900,"ITP for - (10QU) Sampling Container QC",7112,"CCGTD1_IPS",TT_Task,"58322",-,-,-,100,TK_Complete,19/09/2018,20/08/2018,12/10/2018,11/09/2018,"ENG1900 FS","ENG1900","","",164,196,167,199,38,45,39,46,36,,"CCGT D1_Integrated Programme Schedule;M&E;Construction;Inspection & Test Plans",1,0,0.0,0.0,0.0006103764,23,1.0,0.0000922846,0.0068493151,0.0,0.0,0.0,0.0019305019,0.0515695067,1.0,0.0045260418
1.3.1.4-12,ITP2000,"ITP for - (00LBG) Auxiliary Steam System",7112,"CCGTD1_IPS",TT_Task,"58322",-,-,-,100,TK_Complete,30/08/2018,03/07/2018,24/09/2018,08/08/2018,"ENG2000 FS","ENG2000","","",161,189,164,194,37,44,38,45,35,,"CCGT D1_Integrated Programme Schedule;M&E;Construction;Inspection & Test Plans",1,0,0.0,0.0,0.0006103764,25,0.0,0.0000930807,0.0068493151,0.0,0.0,0.0,0.0019305019,0.0560538117,0.0,0.0048522187
1.3.1.4-13,ITP2020,"ITP for - (10PAH) Condenser Tube Cleaning System",7112,"CCGTD1_IPS",TT_Task,"58322",-,-,-,100,TK_Complete,01/08/2018,12/05/2018,27/08/2018,06/06/2018,"ENG2020 FS","ENG2020","","",157,182,160,185,36,42,37,43,33,,"CCGT D1_Integrated Programme Schedule;M&E;Construction;Inspection & Test Plans",1,0,0.0,0.0,0.0006103764,26,1.0,0.0001203275,0.0068493151,0.0,0.0,0.0,0.0019305019,0.0582959641,1.0,0.016016541
1.3.1.4-14,ITP2040,"ITP for - (10PAB-01) Circulating Water System incl. Cooling Water Pumps",7112,"CCGTD1_IPS",TT_Task,"58322",-,-,-,100,TK_Complete,26/06/2018,04/06/2018,19/07/2018,17/07/2018,"ENG2040 FS","ENG2040","","",151,185,155,191,35,43,36,44,31,,"CCGT D1_Integrated Programme Schedule;M&E;Construction;Inspection & Test Plans",1,0,0.0,0.0,0.0006103764,23,0.0,0.0000922846,0.0068493151,0.0,0.0,0.0,0.0019305019,0.0515695067,0.0,0.0045260418
1.3.1.4-15,ITP2050,"ITP for - (00PAA) Cooling Water Screening Plant",7112,"CCGTD1_IPS",TT_Task,"58322",-,-,-,100,TK_Complete,30/08/2018,03/08/2018,24/09/2018,10/08/2018,"ENG2050 FS","ENG2050","","",161,194,164,195,37,45,38,45,35,,"CCGT D1_Integrated Programme Schedule;M&E;Construction;Inspection & Test Plans",1,0,0.0,0.0,0.0006103764,25,1.0,0.0000930807,0.0068493151,0.0,0.0,0.0,0.0019305019,0.0560538117,1.0,0.0048522187
1.3.1.4-16,ITP2060,"ITP for - (00PUR) Cathodic Protection System for Cooling Water Inlet",7112,"CCGTD1_IPS",TT_Task,"58322",-,-,-,100,TK_Complete,12/09/2018,01/06/2018,05/10/2018,13/07/2018,"ENG2060 FS","ENG2060","","",163,185,166,191,38,43,38,44,36,,"CCGT D1_Integrated Programme Schedule;M&E;Construction;Inspection & Test Plans",1,0,0.0,0.0,0.0006103764,23,0.0,0.0000922846,0.0068493151,0.0,0.0,0.0,0.0019305019,0.0515695067,0.0,0.0045260418
1.3.1.4-17,ITP2080,"ITP for - (10PUR) Cathodic Protection System for Cooling Water Side of Condenser",7112,"CCGTD1_IPS",TT_Task,"58322",-,-,-,100,TK_Complete,12/09/2018,01/06/2018,05/10/2018,13/07/2018,"ENG2080 FS","ENG2080","","",163,185,166,191,38,43,38,44,36,,"CCGT D1_Integrated Programme Schedule;M&E;Construction;Inspection & Test Plans",1,0,0.0,0.0,0.0006103764,23,0.0,0.0000922846,0.0068493151,0.0,0.0,0.0,0.0019305019,0.0515695067,0.0,0.0045260418
1.3.1.4-18,ITP2130,"ITP for - (00MBU) NOX Water Forwarding System incl. Supply Lines to GT Skid",7112,"CCGTD1_IPS",TT_Task,"58322",-,-,-,100,TK_Complete,06/08/2018,19/05/2018,29/08/2018,15/06/2018,"ENG2130 FS","ENG2130","","",157,183,161,187,36,42,37,43,34,,"CCGT D1_Integrated Programme Schedule;M&E;Construction;Inspection & Test Plans",1,0,0.0,0.0,0.0006103764,23,0.4,0.0000922846,0.0068493151,0.0,0.0,0.0,0.0019305019,0.0515695067,0.4,0.0045260418
1.3.1.4-19,ITP2180,"ITP for - (00STG) Laboratory Container STG",7112,"CCGTD1_IPS",TT_Task,"58322",-,-,-,100,TK_Complete,01/08/2018,04/06/2018,27/08/2018,17/07/2018,"ENG2180 FS","ENG2180","","",157,185,160,191,36,43,37,44,33,,"CCGT D1_Integrated Programme Schedule;M&E;Construction;Inspection & Test Plans",1,0,0.0,0.0,0.0006103764,26,0.0,0.0000934706,0.0068493151,0.0,0.0,0.0,0.0019305019,0.0582959641,0.0,0.0050119788
1.3.1.4-20,ITP2200,"ITP for - (10SGC-02) FF Spray Deluge Systems for 00UEH/UEJ/UEK Area",7112,"CCGTD1_IPS",TT_Task,"58322",-,-,-,100,TK_Complete,13/11/2018,19/07/2018,07/12/2018,03/08/2018,"ENG2200 FS","ENG2200","","",171,191,175,194,40,44,40,45,38,,"CCGT D1_Integrated Programme Schedule;M&E;Construction;Inspection & Test Plans",1,0,0.0,0.0,0.0006103764,24,1.0,0.0000926854,0.0068493151,0.0,0.0,0.0,0.0019305019,0.0538116592,1.0,0.004690255
1.3.1.4-21,ITP2220,"ITP for - (00EG-01) Fuel Oil Forwarding Station and Storage Tank",7112,"CCGTD1_IPS",TT_Task,"58322",-,-,-,100,TK_Complete,12/09/2018,25/05/2018,05/10/2018,14/06/2018,"ENG2220 FS","ENG2220","","",163,184,166,186,38,42,38,43,36,,"CCGT D1_Integrated Programme Schedule;M&E;Construction;Inspection & Test Plans",1,0,0.0,0.0,0.0006103764,23,1.0,0.0000922846,0.0068493151,0.0,0.0,0.0,0.0019305019,0.0515695067,1.0,0.0045260418
1.3.1.4-22,ITP2230,"ITP for - (00EG-02) Fuel Oil Forwarding System incl. Supply Lines up to Fuel Oil",7112,"CCGTD1_IPS",TT_Task,"58322",-,-,-,100,TK_Complete,26/06/2018,25/05/2018,19/07/2018,25/07/2018,"ENG2230 FS","ENG2230","","",151,184,155,192,35,42,36,44,31,,"CCGT D1_Integrated Programme Schedule;M&E;Construction;Inspection & Test Plans",1,0,0.0,0.0,0.0006103764,23,0.0,0.0000922846,0.0068493151,0.0,0.0,0.0,0.0019305019,0.0515695067,0.0,0.0045260418
1.3.1.4-23,ITP2390,"ITP for - (10HAA) HRSG",7112,"CCGTD1_IPS",TT_Task,"58322",-,-,-,100,TK_Complete,09/02/2018,10/01/2018,06/03/2018,23/03/2018,"ENG1750 FS,ENG0000 FS","ENG1750,ENG0000","","",132,164,135,175,30,38,31,40,18,,"CCGT D1_Integrated Programme Schedule;M&E;Construction;Inspection & Test Plans",2,0,0.0,0.0,0.0006103764,25,0.0,0.0001416091,0.0136986301,0.0,0.0,0.0,0.0019305019,0.0560538117,0.0,0.0247366337
1.3.1.4-24,ITP1000,"ITP for - (00BAW-01) Earthing Grid for back-energizing",7112,"CCGTD1_IPS",TT_Task,"58322",-,-,-,100,TK_Complete,30/08/2018,23/08/2018,24/09/2018,30/11/2019,"ENG1000 FS","ENG1000","","",161,196,164,263,37,45,38,61,35,,"CCGT D1_Integrated Programme Schedule;M&E;Construction;Inspection & Test Plans",1,0,0.0,0.0,0.0006103764,25,0.0,0.0001188241,0.0068493151,0.0,0.0,0.0,0.0019305019,0.0560538117,0.0,0.0154005202
1.3.1.4-25,ITP1010,"ITP for - (00BAW-02) Earthing Grid Complete",7112,"CCGTD1_IPS",TT_Task,"58322",-,-,-,100,TK_Complete,30/08/2018,23/08/2018,24/09/2018,30/11/2019,"ENG1010 FS","ENG1010","","",161,196,164,263,37,45,38,61,35,,"CCGT D1_Integrated Programme Schedule;M&E;Construction;Inspection & Test Plans",1,0,0.0,0.0,0.0006103764,25,0.0,0.0001188241,0.0068493151,0.0,0.0,0.0,0.0019305019,0.0560538117,0.0,0.0154005202
1.3.1.4-26,ITP1030,"ITP for - (10MA-01) HP-/ IP-/ LP-Turbine 10MAA/MAB/MAC",7112,"CCGTD1_IPS",TT_Task,"58322",-,-,-,100,TK_Complete,02/12/2019,07/05/2019,25/12/2019,14/06/2019,"ENG1030 FS","ENG1030","","",226,233,230,239,52,54,53,55,85,,"CCGT D1_Integrated Programme Schedule;M&E;Construction;Inspection & Test Plans",1,0,0.0,0.0,0.0006103764,23,0.0,0.0001503957,0.0068493151,0.0,0.0,0.0,0.0019305019,0.0515695067,0.0,0.0283369572
1.3.1.4-27,ITP2360,"ITP for - (10MAD) ST Bearing System",7112,"CCGTD1_IPS",TT_Task,"58322",-,-,-,100,TK_Complete,30/08/2018,07/05/2018,24/09/2018,29/08/2018,"ENG2360 FS","ENG2360","","",161,181,164,197,37,42,38,46,35,,"CCGT D1_Integrated Programme Schedule;M&E;Construction;Inspection & Test Plans",1,0,0.0,0.0,0.0006103764,25,0.0,0.0001503957,0.0068493151,0.0,0.0,0.0,0.0019305019,0.0560538117,0.0,0.0283369572
1.3.1.4-28,ITP1050,"ITP for - (10MAN) ST Bypass System",7112,"CCGTD1_IPS",TT_Task,"58322",-,-,-,100,TK_Complete,30/08/2018,07/06/2018,24/09/2018,29/08/2018,"","","","",161,185,164,197,37,43,38,46,35,,"CCGT D1_Integrated Programme Schedule;M&E;Construction;Inspection & Test Plans",0,0,0.0,0.0,0.0,25,0.0,0.0000812387,0.0,0.0,0.0,0.0,0.0,0.0560538117,0.0,0.0
1.3.1.4-29,ITP1070,"ITP for - (10MAG) Condensing System",7112,"CCGTD1_IPS",TT_Task,"58322",-,-,-,100,TK_Complete,10/04/2018,28/02/2018,04/05/2018,23/03/2018,"ENG1070 FS","ENG1070","","",140,171,144,175,32,40,33,40,24,,"CCGT D1_Integrated Programme Schedule;M&E;Construction;Inspection & Test Plans",1,0,0.0,0.0,0.0006103764,24,1.0,0.0001056471,0.0068493151,0.0,0.0,0.0,0.0019305019,0.0538116592,1.0,0.010001279
1.3.1.4-30,ITP1080,"ITP for - (10MAV) Lube and Lifting Oil System Incl. Generator and GT",7112,"CCGTD1_IPS",TT_Task,"58322",-,-,-,100,TK_Complete,05/07/2018,09/05/2018,31/07/2018,30/05/2018,"ENG1080 FS","ENG1080","","",153,181,156,184,35,42,36,43,32,,"CCGT D1_Integrated Programme Schedule;M&E;Construction;Inspection & Test Plans",1,0,0.0,0.0,0.0006103764,26,1.0,0.0001503957,0.0068493151,0.0,0.0,0.0,0.0019305019,0.0582959641,1.0,0.0283369572
1.3.1.4-31,ITP1090,"ITP for - (10MAW) Gland / Leakage Steam System",7112,"CCGTD1_IPS",TT_Task,"58322",-,-,-,100,TK_Complete,03/09/2018,25/06/2018,26/09/2018,17/07/2018,"ENG1090 FS","ENG1090","","",161,188,165,191,37,43,38,44,36,,"CCGT D1_Integrated Programme Schedule;M&E;Construction;Inspection & Test Plans",1,0,0.0,0.0,0.0006103764,23,1.0,0.0001503957,0.0068493151,0.0,0.0,0.0,0.0019305019,0.0515695067,1.0,0.0283369572
1.3.1.4-32,ITP1100,"ITP for - (10MAX) ST Hydraulic System",7112,"CCGTD1_IPS",TT_Task,"58322",-,-,-,100,TK_Complete,03/09/2018,25/06/2018,26/09/2018,17/07/2018,"ENG1100 FS","ENG1100","","",161,188,165,191,37,43,38,44,36,,"CCGT D1_Integrated Programme Schedule;M&E;Construction;Inspection & Test Plans",1,0,0.0,0.0,0.0006103764,23,1.0,0.0001503957,0.0068493151,0.0,0.0,0.0,0.0019305019,0.0515695067,1.0,0.0283369572
1.3.1.4-33,ITP1120,"ITP for - (10MKA) Generator Incl. Bearing System 10 MKD",7112,"CCGTD1_IPS",TT_Task,"58322",-,-,-,100,TK_Complete,02/12/2019,08/05/2018,25/12/2019,05/06/2018,"ENG1120 FS","ENG1120","","",226,181,230,185,52,42,53,43,85,,"CCGT D1_Integrated Programme Schedule;M&E;Construction;Inspection & Test Plans",1,0,0.0,0.0,0.0006103764,23,0.4,0.0001143765,0.0068493151,0.0,0.0,0.0,0.0019305019,0.0515695067,0.4,0.0135781253
1.3.1.4-34,ITP1130,"ITP for - (10MKF) Generator Primary Water Cooling System",7112,"CCGTD1_IPS",TT_Task,"58322",-,-,-,100,TK_Complete,03/07/2019,12/05/2018,29/07/2019,05/06/2018,"","","","",205,182,208,185,47,42,48,43,65,,"CCGT D1_Integrated Programme Schedule;M&E;Construction;Inspection & Test Plans",0,0,0.0,0.0,0.0,26,1.0,0.0000812387,0.0,0.0,0.0,0.0,0.0,0.0582959641,1.0,0.0
1.3.1.4-35,ITP1140,"ITP for - (10MKG) Gas Supply System",7112,"CCGTD1_IPS",TT_Task,"58322",-,-,-,100,TK_Complete,01/08/2018,12/05/2018,27/08/2018,05/06/2018,"","","","",157,182,160,185,36,42,37,43,34,,"CCGT D1_Integrated Programme Schedule;M&E;Construction;Inspection & Test Plans",0,0,0.0,0.0,0.0,26,1.0,0.0000812387,0.0,0.0,0.0,0.0,0.0,0.0582959641,1.0,0.0
1.3.1.4-36,ITP1020,"ITP for - (00BAW-03) Lightening Protection",7112,"CCGTD1_IPS",TT_Task,"58322",-,-,-,100,TK_Complete,30/08/2018,23/08/2018,24/09/2018,30/11/2019,"ENG1020 FS","ENG1020","","",161,196,164,263,37,45,38,61,35,,"CCGT D1_Integrated Programme Schedule;M&E;Construction;Inspection & Test Plans",1,0,0.0,0.0,0.0006103764,25,0.0,0.0001188241,0.0068493151,0.0,0.0,0.0,0.0019305019,0.0560538117,0.0,0.0154005202
1.3.1.4-37,ITP1150,"ITP for - (10MKQ) Waste Gas System",7112,"CCGTD1_IPS",TT_Task,"58322",-,-,-,100,TK_Complete,03/07/2019,31/05/2018,29/07/2019,14/07/2018,"","","","",205,184,208,191,47,43,48,44,65,,"CCGT D1_Integrated Programme Schedule;M&E;Construction;Inspection & Test Plans",0,0,0.0,0.0,0.0,26,0.0,0.0000812387,0.0,0.0,0.0,0.0,0.0,0.0582959641,0.0,0.0
1.3.1.4-38,ITP1160,"ITP for - (10MKW) Seal Oil Supply System",7112,"CCGTD1_IPS",TT_Task,"58322",-,-,-,100,TK_Complete,02/07/2018,11/05/2018,26/07/2018,30/06/2018,"","","","",152,182,156,189,35,42,36,44,32,,"CCGT D1_Integrated Programme Schedule;M&E;Construction;Inspection & Test Plans",0,0,0.0,0.0,0.0,24,0.0,0.0000812387,0.0,0.0,0.0,0.0,0.0,0.0538116592,0.0,0.0
1.3.1.4-39,ITP1180,"ITP for - (10MBA) GT Including Combustion Chamber",7112,"CCGTD1_IPS",TT_Task,"58322",-,-,-,100,TK_Complete,02/12/2019,08/05/2018,25/12/2019,14/06/2018,"ENG1180 FS","ENG1180","","",226,181,230,186,52,42,53,43,85,,"CCGT D1_Integrated Programme Schedule;M&E;Construction;Inspection & Test Plans",1,0,0.0,0.0,0.0006103764,23,0.0,0.0001503957,0.0068493151,0.0,0.0,0.0,0.0019305019,0.0515695067,0.0,0.0283369572
1.3.1.4-40,ITP1190,"ITP for - (10MBX) GT Hydraulic Oil",7112,"CCGTD1_IPS",TT_Task,"58322",-,-,-,100,TK_Complete,11/07/2018,19/05/2018,03/08/2018,28/06/2018,"ENG1190 FS","ENG1190","","",154,183,157,188,35,42,36,44,32,,"CCGT D1_Integrated Programme Schedule;M&E;Construction;Inspection & Test Plans",1,0,0.0,0.0,0.0006103764,23,0.0,0.0001503957,0.0068493151,0.0,0.0,0.0,0.0019305019,0.0515695067,0.0,0.0283369572
1.3.1.4-41,ITP1200,"ITP for - (10MBP) GT Natural Gas Incl. Draining System MBP40",7112,"CCGTD1_IPS",TT_Task,"58322",-,-,-,100,TK_Complete,03/07/2019,01/06/2018,29/07/2019,13/07/2018,"ENG1200 FS","ENG1200","","",205,185,208,191,47,43,48,44,65,,"CCGT D1_Integrated Programme Schedule;M&E;Construction;Inspection & Test Plans",1,0,0.0,0.0,0.0006103764,26,0.0,0.0001503957,0.0068493151,0.0,0.0,0.0,0.0019305019,0.0582959641,0.0,0.0283369572
1.3.1.4-42,ITP1210,"ITP for - (10MBN) GT Fuel Oil Injection System",7112,"CCGTD1_IPS",TT_Task,"58322",-,-,-,100,TK_Complete,03/07/2019,19/05/2018,29/07/2019,16/07/2018,"ENG1210 FS","ENG1210","","",205,183,208,191,47,42,48,44,65,,"CCGT D1_Integrated Programme Schedule;M&E;Construction;Inspection & Test Plans",1,0,0.0,0.0,0.0006103764,26,0.0,0.0001503957,0.0068493151,0.0,0.0,0.0,0.0019305019,0.0582959641,0.0,0.0283369572
1.3.1.4-43,ITP1220,"ITP for - (10MBH) GT Cooling Air System",7112,"CCGTD1_IPS",TT_Task,"58322",-,-,-,100,TK_Complete,05/07/2018,19/05/2018,31/07/2018,15/06/2018,"ENG1220 FS","ENG1220","","",153,183,156,187,35,42,36,43,32,,"CCGT D1_Integrated Programme Schedule;M&E;Construction;Inspection & Test Plans",1,0,0.0,0.0,0.0006103764,26,0.8,0.0001503957,0.0068493151,0.0,0.0,0.0,0.0019305019,0.0582959641,0.8,0.0283369572
1.3.1.4-44,ITP1230,"ITP for - (10MBA18) Compressor Cleaning Package",7112,"CCGTD1_IPS",TT_Task,"58322",-,-,-,100,TK_Complete,02/12/2019,13/06/2018,25/12/2019,21/06/2018,"","","","",226,186,230,187,52,43,53,43,85,,"CCGT D1_Integrated Programme Schedule;M&E;Construction;Inspection & Test Plans",0,0,0.0,0.0,0.0,23,1.0,0.0000812387,0.0,0.0,0.0,0.0,0.0,0.0515695067,1.0,0.0
1.3.1.4-45,ITP1240,"ITP for - (10MBA5x) GT Hydraulic Clearance Optimization Supply System",7112,"CCGTD1_IPS",TT_Task,"58322",-,-,-,100,TK_Complete,02/12/2019,02/06/2018,25/12/2019,12/07/2018,"","","","",226,185,230,190,52,43,53,44,85,,"CCGT D1_Integrated Programme Schedule;M&E;Construction;Inspection & Test Plans",0,0,0.0,0.0,0.0,23,0.0,0.0000812387,0.0,0.0,0.0,0.0,0.0,0.0515695067,0.0,0.0
1.3.1.4-46,ITP1250,"ITP for - (10MBX2x) GT Pneumatic System",7112,"CCGTD1_IPS",TT_Task,"58322",-,-,-,100,TK_Complete,26/06/2018,19/05/2018,19/07/2018,28/06/2018,"ENG1250 FS","ENG1250","","",151,183,155,188,35,42,36,44,31,,"CCGT D1_Integrated Programme Schedule;M&E;Construction;Inspection & Test Plans",1,0,0.0,0.0,0.0006103764,23,0.0,0.0001503957,0.0068493151,0.0,0.0,0.0,0.0019305019,0.0515695067,0.0,0.0283369572
1.3.1.4-47,ITP1280,"ITP for - (10MBL) Air Intake System",7112,"CCGTD1_IPS",TT_Task,"58322",-,-,-,100,TK_Complete,02/12/2019,07/05/2018,25/12/2019,14/06/2018,"ENG1280 FS","ENG1280","","",226,181,230,186,52,42,53,43,85,,"CCGT D1_Integrated Programme Schedule;M&E;Construction;Inspection & Test Plans",1,0,0.0,0.0,0.0006103764,23,0.0,0.0001503957,0.0068493151,0.0,0.0,0.0,0.0019305019,0.0515695067,0.0,0.0283369572
1.3.1.4-48,ITP1290,"ITP for - (10MBU) GT NOX Water Injection System",7112,"CCGTD1_IPS",TT_Task,"58322",-,-,-,100,TK_Complete,02/12/2019,19/05/2018,25/12/2019,15/06/2018,"ENG1290 FS","ENG1290","","",226,183,230,187,52,42,53,43,85,,"CCGT D1_Integrated Programme Schedule;M&E;Construction;Inspection & Test Plans",1,0,0.0,0.0,0.0006103764,23,0.4,0.0001503957,0.0068493151,0.0,0.0,0.0,0.0019305019,0.0515695067,0.4,0.0283369572
1.3.1.4-49,ITP1330,"ITP for - (10LCA) Main Condensate Pumps and Supply System for Min. Flow Operation Incl.",7112,"CCGTD1_IPS",TT_Task,"58322",-,-,-,100,TK_Complete,17/09/2018,04/06/2018,10/10/2018,16/07/2018,"ENG1330 FS","ENG1330","","",163,185,167,191,38,43,38,44,36,,"CCGT D1_Integrated Programme Schedule;M&E;Construction;Inspection & Test Plans",1,0,0.0,0.0,0.0006103764,23,0.0,0.0000922846,0.0068493151,0.0,0.0,0.0,0.0019305019,0.0515695067,0.0,0.0045260418
1.3.1.4-50,ITP1340,"ITP for - (10PGB) Closed Cooling Water System",7112,"CCGTD1_IPS",TT_Task,"58322",-,-,-,100,TK_Complete,02/12/2019,04/06/2018,25/12/2019,09/08/2018,"ENG1340 FS","ENG1340","","",226,185,230,194,52,43,53,45,85,,"CCGT D1_Integrated Programme Schedule;M&E;Construction;Inspection & Test Plans",1,0,0.0,0.0,0.0006103764,23,0.0,0.0000922846,0.0068493151,0.0,0.0,0.0,0.0019305019,0.0515695067,0.0,0.0045260418
1.3.1.4-51,ITP1350,"ITP for - (10PCB) Service Cooling Water System Incl. 10PDB",7112,"CCGTD1_IPS",TT_Task,"58322",-,-,-,100,TK_Complete,12/11/2018,04/06/2018,06/12/2018,06/08/2018,"ENG1350 FS","ENG1350","","",171,185,175,194,40,43,40,45,38,,"CCGT D1_Integrated Programme Schedule;M&E;Construction;Inspection & Test Plans",1,0,0.0,0.0,0.0006103764,24,0.0,0.0000926854,0.0068493151,0.0,0.0,0.0,0.0019305019,0.0538116592,0.0,0.004690255
1.3.1.4-52,ITP1390,"ITP for - (10SGA) FF Indoor Hydrants 10SGA Inside 10ULA, 10UHA, 10UMC",7112,"CCGTD1_IPS",TT_Task,"58322",-,-,-,100,TK_Complete,22/11/2018,09/07/2018,18/12/2018,27/07/2018,"ENG1390 FS","ENG1390","","",173,190,176,193,40,44,41,45,38,,"CCGT D1_Integrated Programme Schedule;M&E;Construction;Inspection & Test Plans",1,0,0.0,0.0,0.0006103764,26,1.0,0.0000934706,0.0068493151,0.0,0.0,0.0,0.0019305019,0.0582959641,1.0,0.0050119788
1.3.1.4-53,ITP1400,"ITP for - (10SGC-02) FF Spray Deluge System 10SGC for Lube Oil / Seal Oil System",7112,"CCGTD1_IPS",TT_Task,"58322",-,-,-,100,TK_Complete,13/11/2018,19/07/2018,07/12/2018,03/08/2018,"","","","",171,191,175,194,40,44,40,45,38,,"CCGT D1_Integrated Programme Schedule;M&E;Construction;Inspection & Test Plans",0,0,0.0,0.0,0.0,24,1.0,0.0000812387,0.0,0.0,0.0,0.0,0.0,0.0538116592,1.0,0.0
1.3.1.4-54,ITP1580,"ITP for - (10BAT) Main Transformer 10BAT01/10BBT01",7112,"CCGTD1_IPS",TT_Task,"58322",-,-,-,100,TK_Complete,30/08/2018,16/08/2018,24/09/2018,30/11/2019,"","","","",161,195,164,263,37,45,38,61,36,,"CCGT D1_Integrated Programme Schedule;M&E;Construction;Inspection & Test Plans",0,0,0.0,0.0,0.0,25,0.0,0.0000812387,0.0,0.0,0.0,0.0,0.0,0.0560538117,0.0,0.0
1.3.1.4-55,ITP1600,"ITP for - (10MKC) SEE/SFC Equipment Excitation Transformer MKC; SFC Transformer MBJ",7112,"CCGTD1_IPS",TT_Task,"58322",-,-,-,100,TK_Complete,13/11/2018,17/08/2018,06/12/2018,28/08/2018,"ENG1600 FS","ENG1600","","",171,196,175,197,40,45,40,46,38,,"CCGT D1_Integrated Programme Schedule;M&E;Construction;Inspection & Test Plans",1,0,0.0,0.0,0.0006103764,23,1.0,0.000117389,0.0068493151,0.0,0.0,0.0,0.0019305019,0.0515695067,1.0,0.0148125003
1.3.1.4-56,ITP1610,"ITP for - (10SGC-01) FF Spary Deluge System for BAT/ BBT SGC",7112,"CCGTD1_IPS",TT_Task,"58322",-,-,-,100,TK_Complete,20/03/2019,19/07/2018,12/04/2019,03/08/2018,"ENG1610 FS","ENG1610","","",190,191,193,194,44,44,45,45,48,,"CCGT D1_Integrated Programme Schedule;M&E;Construction;Inspection & Test Plans",1,0,0.0,0.0,0.0006103764,23,1.0,0.0000922846,0.0068493151,0.0,0.0,0.0,0.0019305019,0.0515695067,1.0,0.0045260418
1.3.1.4-57,ITP1620,"ITP for - (10LD) Condensate Polishing Plant",7112,"CCGTD1_IPS",TT_Task,"58322",-,-,-,100,TK_Complete,30/08/2018,04/06/2018,24/09/2018,16/07/2018,"ENG1620 FS","ENG1620","","",161,185,164,191,37,43,38,44,36,,"CCGT D1_Integrated Programme Schedule;M&E;Construction;Inspection & Test Plans",1,0,0.0,0.0,0.0006103764,25,0.0,0.0000930807,0.0068493151,0.0,0.0,0.0,0.0019305019,0.0560538117,0.0,0.0048522187
1.3.1.4-58,ITP1630,"ITP for - (10LDK) Condensate Polishing System",7112,"CCGTD1_IPS",TT_Task,"58322",-,-,-,100,TK_Complete,01/08/2018,04/06/2018,27/08/2018,16/07/2018,"ENG1630 FS","ENG1630","","",157,185,160,191,36,43,37,44,34,,"CCGT D1_Integrated Programme Schedule;M&E;Construction;Inspection & Test Plans",1,0,0.0,0.0,0.0006103764,26,0.0,0.0000934706,0.0068493151,0.0,0.0,0.0,0.0019305019,0.0582959641,0.0,0.0050119788
1.3.1.4-59,ITP1660,"ITP for - (00SGM) FF Protection System for UBN",7112,"CCGTD1_IPS",TT_Task,"58322",-,-,-,100,TK_Complete,28/11/2018,19/07/2018,21/12/2018,01/08/2018,"","","","",174,191,177,193,40,44,41,45,41,,"CCGT D1_Integrated Programme Schedule;M&E;Construction;Inspection & Test Plans",0,0,0.0,0.0,0.0,23,1.0,0.0000812387,0.0,0.0,0.0,0.0,0.0,0.0515695067,1.0,0.0
1.3.1.4-60,ITP1670,"ITP for - (10BFT01) LV-Transformer BFT01 (BHT)",7112,"CCGTD1_IPS",TT_Task,"58322",-,-,-,100,TK_Complete,06/07/2018,06/07/2018,31/07/2018,18/07/2018,"","","","",153,190,156,191,35,44,36,44,32,,"CCGT D1_Integrated Programme Schedule;M&E;Construction;Inspection & Test Plans",0,0,0.0,0.0,0.0,25,1.0,0.0000812387,0.0,0.0,0.0,0.0,0.0,0.0560538117,1.0,0.0
1.3.1.4-61,ITP1680,"ITP for - (10BFT02) LV-Transformer BFT02 (BHT)",7112,"CCGTD1_IPS",TT_Task,"58322",-,-,-,100,TK_Complete,27/11/2018,03/08/2018,20/12/2018,30/11/2019,"","","","",173,194,177,263,40,45,41,61,40,,"CCGT D1_Integrated Programme Schedule;M&E;Construction;Inspection & Test Plans",0,0,0.0,0.0,0.0,23,0.0,0.0000812387,0.0,0.0,0.0,0.0,0.0,0.0515695067,0.0,0.0
1.3.1.4-62,ITP1690,"ITP for - (00BBT) MV Transformer BBT01",7112,"CCGTD1_IPS",TT_Task,"58322",-,-,-,100,TK_Complete,27/11/2018,29/08/2018,20/12/2018,30/11/2019,"","","","",173,197,177,263,40,46,41,61,40,,"CCGT D1_Integrated Programme Schedule;M&E;Construction;Inspection & Test Plans",0,0,0.0,0.0,0.0,23,0.0,0.0000812387,0.0,0.0,0.0,0.0,0.0,0.0515695067,0.0,0.0
1.3.1.4-63,ITP1710,"ITP for - (10MBR) Exhaust Gas System",7112,"CCGTD1_IPS",TT_Task,"58322",-,-,-,100,TK_Complete,10/08/2018,11/05/2018,04/09/2018,05/06/2018,"ENG1710 FS","ENG1710","","",158,182,161,185,36,42,37,43,34,,"CCGT D1_Integrated Programme Schedule;M&E;Construction;Inspection & Test Plans",1,0,0.0,0.0,0.0006103764,25,1.0,0.0001503957,0.0068493151,0.0,0.0,0.0,0.0019305019,0.0560538117,1.0,0.0283369572
1.3.1.4-64,ITP1720,"ITP for - (10EK) Fuel Gas Supply System for GT10",7112,"CCGTD1_IPS",TT_Task,"58322",-,-,-,100,TK_Complete,11/07/2018,22/06/2018,03/08/2018,31/07/2018,"ENG1720 FS","ENG1720","","",154,188,157,193,35,43,36,45,32,,"CCGT D1_Integrated Programme Schedule;M&E;Construction;Inspection & Test Plans",1,0,0.0,0.0,0.0006103764,23,0.0,0.0000922846,0.0068493151,0.0,0.0,0.0,0.0019305019,0.0515695067,0.0,0.0045260418
1.3.1.5,58321,"Crane Mobilization",7112,"CCGTD1_IPS",WBS,"58320",,,,100,Complete,01/03/2018,14/02/2018,10/07/2018,23/03/2018,,,,,135,169,153,175,31,39,35,40,,,"CCGT D1_Integrated Programme Schedule;M&E;Construction"
1.3.1.5-1,MWS03.1010,"Mobilisation of the Crane Barge to Site",7112,"CCGTD1_IPS",TT_Task,"58321",-,-,-,100,TK_Complete,13/03/2018,14/02/2018,10/07/2018,15/03/2018,"MWS01.1000 FS,A1010 FS","MWS01.1000,A1010","SC1030 FS","SC1030",136,169,153,173,31,39,35,40,22,,"CCGT D1_Integrated Programme Schedule;M&E;Construction;Crane Mobilization",2,1,0.0000000828,0.0018311292,0.0004069176,119,1.0,0.0001567282,0.0136986301,0.0030769231,0.000125,0.0046997389,0.0012870013,0.2668161435,1.0,0.0309316706
1.3.1.5-2,MWS03.1020,"Mobilisation of the Land based cranes to Site",7112,"CCGTD1_IPS",TT_Task,"58321",-,-,-,100,TK_Complete,01/03/2018,19/03/2018,08/03/2018,23/03/2018,"MWS01.1010 FS,A1010 FS","MWS01.1010,A1010","","",135,174,136,175,31,40,31,40,21,,"CCGT D1_Integrated Programme Schedule;M&E;Construction;Crane Mobilization",2,0,0.0,0.0,0.0004069176,7,1.0,0.0001513456,0.0136986301,0.0,0.0,0.0,0.0012870013,0.0156950673,1.0,0.0287261535
1.3.2,58312,"Procurement",7112,"CCGTD1_IPS",WBS,"58236",,,,100,Complete,01/02/2018,06/11/2017,06/04/2020,28/03/2020,,,,,131,155,244,280,30,36,57,65,,,"CCGT D1_Integrated Programme Schedule;M&E"
1.3.2.1,58319,"CLP Deliverables",7112,"CCGTD1_IPS",WBS,"58312",,,,100,Complete,01/03/2018,12/12/2017,06/04/2020,28/03/2020,,,,,135,160,244,280,31,37,57,65,,,"CCGT D1_Integrated Programme Schedule;M&E;Procurement"
1.3.2.1-1,SI1BBA4-10,"Equipment Delivery by Siemens - MV Switchgear BBA",7112,"CCGTD1_IPS",TT_Mile,"58319",-,-,-,100,TK_Complete,30/11/2019,10/03/2019,30/11/2019,10/03/2019,"A1010 FS","A1010","10BBE10 FS","10BBE10",226,225,226,225,52,52,52,52,82,,"CCGT D1_Integrated Programme Schedule;M&E;Procurement;CLP Deliverables",1,1,0.0000000414,0.0085452696,0.0002034588,0,1.0,0.0000812387,0.0068493151,0.0030769231,0.0000625,0.0219321149,0.0006435006,0.0,1.0,0.0
1.3.2.1-2,SI1BFA4-10,"Equipment Delivery by Siemens - LV/DC Switchgear BFA",7112,"CCGTD1_IPS",TT_Mile,"58319",-,-,-,100,TK_Complete,30/11/2019,09/04/2019,30/11/2019,09/04/2019,"A1010 FS","A1010","ECS19.1210 FS,10BT10 FS","ECS19.1210,10BT10",226,229,226,229,52,53,52,53,82,,"CCGT D1_Integrated Programme Schedule;M&E;Procurement;CLP Deliverables",1,2,0.0000003312,0.0056968464,0.0002034588,0,1.0,0.0000812387,0.0068493151,0.0061538462,0.0005,0.0146214099,0.0006435006,0.0,1.0,0.0
1.3.2.1-3,SI1UBA4G25,"Equipment Delivery by Siemens - Cabinets for I&C 10UBA Building",7112,"CCGTD1_IPS",TT_Mile,"58319",-,-,-,100,TK_Complete,28/03/2020,20/02/2019,28/03/2020,20/02/2019,"A1010 FS","A1010","","",243,222,243,222,56,51,56,51,89,,"CCGT D1_Integrated Programme Schedule;M&E;Procurement;CLP Deliverables",1,0,0.0,0.0,0.0002034588,0,1.0,0.0000812387,0.0068493151,0.0,0.0,0.0,0.0006435006,0.0,1.0,0.0
1.3.2.1-4,SI1SGJ4-25,"Equipment Delivery by Siemens - Econopac fire Protection System CYE/ SGJ",7112,"CCGTD1_IPS",TT_Mile,"58319",-,-,-,100,TK_Complete,30/11/2019,07/03/2019,30/11/2019,07/03/2019,"A1010 FS","A1010","10SGJ-02-10 FS,FSS22.1140 FS","10SGJ-02-10,FSS22.1140",226,224,226,224,52,52,52,52,82,,"CCGT D1_Integrated Programme Schedule;M&E;Procurement;CLP Deliverables",1,2,0.0000000311,0.0036622584,0.0002034588,0,1.0,0.0000812387,0.0068493151,0.0061538462,0.000046875,0.0093994778,0.0006435006,0.0,1.0,0.0
1.3.2.1-5,SI1MA-4-55,"Equipment Delivery by Siemens - ST MA- (LP-ROTOR, INNERCASING)",7112,"CCGTD1_IPS",TT_Mile,"58319",-,-,-,100,TK_Complete,26/04/2018,28/03/2018,26/04/2018,28/03/2018,"A1010 FS","A1010","10MA-1150 FS,10MAA-1000 FS,10MA-1140 FS","10MA-1150,10MAA-1000,10MA-1140",143,175,143,175,33,41,33,41,26,,"CCGT D1_Integrated Programme Schedule;M&E;Procurement;CLP Deliverables",1,3,0.0000001242,0.0677517803,0.0002034588,0,1.0,0.0000812387,0.0068493151,0.0092307692,0.0001875,0.1738903394,0.0006435006,0.0,1.0,0.0
1.3.2.1-6,SI1MA-4-25,"Equipment Delivery by Siemens - STEAM TURBINE MA- (HP/IP) (incl. FCA)",7112,"CCGTD1_IPS",TT_Mile,"58319",-,-,-,100,TK_Complete,26/04/2018,28/03/2018,26/04/2018,28/03/2018,"A1010 FS,SP1MA-3-80 FS","A1010,SP1MA-3-80","10MAA-1000 FS,10MA-1150 FS,10MA-1140 FS","10MAA-1000,10MA-1150,10MA-1140",143,175,143,175,33,41,33,41,26,,"CCGT D1_Integrated Programme Schedule;M&E;Procurement;CLP Deliverables",2,3,0.0000066246,0.0677517803,0.0004069176,0,1.0,0.0000812387,0.0136986301,0.0092307692,0.01,0.1738903394,0.0012870013,0.0,1.0,0.0
1.3.2.1-7,SP1MA-3-80,"Equipment Delivery by Siemens - STEAM TURBINE MA- (HP/IP) EX WORKS",7112,"CCGTD1_IPS",TT_Mile,"58319",-,-,-,100,TK_Complete,19/03/2018,12/12/2017,19/03/2018,12/12/2017,"A1010 FS","A1010","KD_B06 FS,SI1MA-4-25 FS,Sub-GTST-180 FS","KD_B06,SI1MA-4-25,Sub-GTST-180",137,160,137,160,32,37,32,37,22,,"CCGT D1_Integrated Programme Schedule;M&E;Procurement;CLP Deliverables",1,3,0.0000000414,0.100508647,0.0002034588,0,1.0,0.0000812387,0.0068493151,0.0092307692,0.0000625,0.2579634465,0.0006435006,0.0,1.0,0.0
1.3.2.1-8,SI1MA-4-45,"Equipment Delivery by Siemens - ST MA- (LP OUTER CASING)",7112,"CCGTD1_IPS",TT_Mile,"58319",-,-,-,100,TK_Complete,26/04/2018,28/03/2018,26/04/2018,28/03/2018,"A1010 FS","A1010","10MAN1000 FS,10MAA-1000 FS,10MA-1140 FS,10MA-1150 FS","10MAN1000,10MAA-1000,10MA-1140,10MA-1150",143,175,143,175,33,41,33,41,26,,"CCGT D1_Integrated Programme Schedule;M&E;Procurement;CLP Deliverables",1,4,0.000000207,0.0677517803,0.0002034588,0,1.0,0.0000812387,0.0068493151,0.0123076923,0.0003125,0.1738903394,0.0006435006,0.0,1.0,0.0
1.3.2.1-9,SI1MAW4-40,"Equipment Delivery by Siemens - ST GLAND STEAM CONDENSER MAW",7112,"CCGTD1_IPS",TT_Mile,"58319",-,-,-,100,TK_Complete,26/04/2018,28/03/2018,26/04/2018,28/03/2018,"A1010 FS","A1010","10MAW10 FS","10MAW10",143,175,143,175,33,41,33,41,26,,"CCGT D1_Integrated Programme Schedule;M&E;Procurement;CLP Deliverables",1,1,0.0000000138,0.006103764,0.0002034588,0,1.0,0.0000812387,0.0068493151,0.0030769231,0.0000208333,0.0156657963,0.0006435006,0.0,1.0,0.0
1.3.2.1-10,SI0XKA4-25,"Equipment Delivery by Siemens - EMERGENCY DIESEL GENERATOR SET XKA",7112,"CCGTD1_IPS",TT_Mile,"58319",-,-,-,100,TK_Complete,30/11/2019,22/07/2019,30/11/2019,22/07/2019,"A1010 FS","A1010","00XKA10 FS","00XKA10",226,244,226,244,52,57,52,57,82,,"CCGT D1_Integrated Programme Schedule;M&E;Procurement;CLP Deliverables",1,1,0.0000000414,0.0036622584,0.0002034588,0,1.0,0.0000812387,0.0068493151,0.0030769231,0.0000625,0.0093994778,0.0006435006,0.0,1.0,0.0
1.3.2.1-11,EDS.1000,"Equipment Delivery by Siemens - Lighting Fixture",7112,"CCGTD1_IPS",TT_Mile,"58319",-,-,-,100,TK_Complete,30/11/2019,31/05/2019,30/11/2019,31/05/2019,"A1010 FS","A1010","10BZL-01-10 FS,00BZL-02-10 FS,10BZL-02-10 FS,00BZL-01-10 FS,10BZL-03-10 FS,00BZL-03-10 FS,A2330 FS","10BZL-01-10,00BZL-02-10,10BZL-02-10,00BZL-01-10,10BZL-03-10,00BZL-03-10,A2330",226,237,226,237,52,55,52,55,82,,"CCGT D1_Integrated Programme Schedule;M&E;Procurement;CLP Deliverables",1,7,0.0000001932,0.007121058,0.0002034588,0,1.0,0.0000812387,0.0068493151,0.0215384615,0.0002916667,0.0182767624,0.0006435006,0.0,1.0,0.0
1.3.2.1-12,SI1MKC4-25,"Equipment Delivery by Siemens - SEE TRANSFORMER MKC / SFC TRANSFORMER MBJ",7112,"CCGTD1_IPS",TT_Mile,"58319",-,-,-,100,TK_Complete,26/04/2018,02/05/2018,26/04/2018,02/05/2018,"A1010 FS","A1010","ECS21.1010 FS","ECS21.1010",143,180,143,180,33,42,33,42,26,,"CCGT D1_Integrated Programme Schedule;M&E;Procurement;CLP Deliverables",1,1,0.0,0.0075279756,0.0002034588,0,1.0,0.0000812387,0.0068493151,0.0030769231,0.0,0.0193211488,0.0006435006,0.0,1.0,0.0
1.3.2.1-13,SI-CYA4-25,"Equipment Delivery by Siemens - TELECOMMUNICATION CYA",7112,"CCGTD1_IPS",TT_Mile,"58319",-,-,-,100,TK_Complete,30/11/2019,16/04/2019,30/11/2019,16/04/2019,"A1010 FS","A1010","10CY10 FS,CP-CYP7A25 FS,00CY10 FS","10CY10,CP-CYP7A25,00CY10",226,230,226,230,52,53,52,53,82,,"CCGT D1_Integrated Programme Schedule;M&E;Procurement;CLP Deliverables",1,3,0.0000002208,0.0052899288,0.0002034588,0,1.0,0.0000812387,0.0068493151,0.0092307692,0.0003333333,0.0135770235,0.0006435006,0.0,1.0,0.0
1.3.2.1-14,EDS.1010,"Equipment Delivery by Siemens - Batteries, Battery Charger, Converter & Inverter and UPS System",7112,"CCGTD1_IPS",TT_Mile,"58319",-,-,-,100,TK_Complete,26/04/2018,28/03/2018,26/04/2018,28/03/2018,"A1010 FS","A1010","ECS19.1210 FS","ECS19.1210",143,175,143,175,33,41,33,41,26,,"CCGT D1_Integrated Programme Schedule;M&E;Procurement;CLP Deliverables",1,1,0.0000003105,0.0054933876,0.0002034588,0,1.0,0.0000812387,0.0068493151,0.0030769231,0.00046875,0.0140992167,0.0006435006,0.0,1.0,0.0
1.3.2.1-15,EDS.1020,"Equipment Delivery by Siemens - Filter House System",7112,"CCGTD1_IPS",TT_Mile,"58319",-,-,-,100,TK_Complete,30/11/2019,20/04/2019,30/11/2019,20/04/2019,"A1010 FS","A1010","10MBL1040 FS","10MBL1040",226,231,226,231,52,53,52,53,82,,"CCGT D1_Integrated Programme Schedule;M&E;Procurement;CLP Deliverables",1,1,0.0000000828,0.0024415056,0.0002034588,0,1.0,0.0000812387,0.0068493151,0.0030769231,0.000125,0.0062663185,0.0006435006,0.0,1.0,0.0
1.3.2.1-16,SI1PAH4-25,"Equipment Delivery by Siemens - Condenser Tube Cleaning System PAH/PCH",7112,"CCGTD1_IPS",TT_Mile,"58319",-,-,-,100,TK_Complete,01/03/2018,17/01/2018,01/03/2018,17/01/2018,"A1010 FS","A1010","10PAH10 FS","10PAH10",135,165,135,165,31,38,31,38,21,,"CCGT D1_Integrated Programme Schedule;M&E;Procurement;CLP Deliverables",1,1,0.0,0.0042726348,0.0002034588,0,1.0,0.0000812387,0.0068493151,0.0030769231,0.0,0.0109660574,0.0006435006,0.0,1.0,0.0
1.3.2.1-17,EDS.1030,"Equipment Delivery by Siemens - Cathodic Corrosion Protection System",7112,"CCGTD1_IPS",TT_Mile,"58319",-,-,-,100,TK_Complete,30/11/2019,19/09/2019,30/11/2019,19/09/2019,"A1010 FS","A1010","10PUR10 FS,00UPR10 FS","10PUR10,00UPR10",226,252,226,252,52,59,52,59,83,,"CCGT D1_Integrated Programme Schedule;M&E;Procurement;CLP Deliverables",1,2,0.0,0.0052899288,0.0002034588,0,1.0,0.0000812387,0.0068493151,0.0061538462,0.0,0.0135770235,0.0006435006,0.0,1.0,0.0
1.3.2.1-18,EDS.1040,"Equipment Delivery by Siemens - Central Control Room Furniture and Equipment",7112,"CCGTD1_IPS",TT_Mile,"58319",-,-,-,100,TK_Complete,30/11/2019,15/03/2019,30/11/2019,15/03/2019,"A1010 FS","A1010","00CR20 FS,00CR80 FS,00CR90 FS,00CR50 FS,00CR60 FS,00CR10 FS,00CR100 FS,00CR40 FS,00CR70 FS","00CR20,00CR80,00CR90,00CR50,00CR60,00CR10,00CR100,00CR40,00CR70",226,226,226,226,52,52,52,52,83,,"CCGT D1_Integrated Programme Schedule;M&E;Procurement;CLP Deliverables",1,9,0.0000001339,0.0067141404,0.0002034588,0,1.0,0.0000812387,0.0068493151,0.0276923077,0.0002020833,0.017232376,0.0006435006,0.0,1.0,0.0
1.3.2.1-19,EDS.1050,"Equipment Delivery by Siemens - Continuous Emission Monitoring System Equipment",7112,"CCGTD1_IPS",TT_Mile,"58319",-,-,-,100,TK_Complete,30/11/2019,20/05/2019,30/11/2019,20/05/2019,"A1010 FS","A1010","10CFE10 FS","10CFE10",226,235,226,235,52,54,52,54,83,,"CCGT D1_Integrated Programme Schedule;M&E;Procurement;CLP Deliverables",1,1,0.0000000621,0.004069176,0.0002034588,0,1.0,0.0000812387,0.0068493151,0.0030769231,0.00009375,0.0104438642,0.0006435006,0.0,1.0,0.0
1.3.2.1-20,EDS.1060,"Equipment Delivery by Siemens - Electrical, Control & Instrumentation (for Gas Turbine & Auxiliaries)",7112,"CCGTD1_IPS",TT_Mile,"58319",-,-,-,100,TK_Complete,30/11/2019,22/03/2019,30/11/2019,22/03/2019,"A1010 FS","A1010","10MBP50 FS,10MBA18-150 FS,10MBA1180 FS,10MBA5x50 FS,10MBX2x50 FS,10MBA1350 FS,10MBU50 FS,10MBV1050 FS,10MBL1060 FS,10MBA4x50 FS","10MBP50,10MBA18-150,10MBA1180,10MBA5x50,10MBX2x50,10MBA1350,10MBU50,10MBV1050,10MBL1060,10MBA4x50",226,227,226,227,52,52,52,52,83,,"CCGT D1_Integrated Programme Schedule;M&E;Procurement;CLP Deliverables",1,10,0.0000007504,0.0120040692,0.0002034588,0,1.0,0.0000812387,0.0068493151,0.0307692308,0.0011328125,0.0308093995,0.0006435006,0.0,1.0,0.0
1.3.2.1-21,EDS.1070,"Equipment Delivery by Siemens - Electrical, Control & Instrumentation (for HRSG)",7112,"CCGTD1_IPS",TT_Mile,"58319",-,-,-,100,TK_Complete,30/11/2019,15/05/2019,30/11/2019,15/05/2019,"A1010 FS","A1010","ECS20.1050 SS,10HAD80-50 FS,10HAD50-50 FS","ECS20.1050,10HAD80-50,10HAD50-50",226,234,226,234,52,54,52,54,83,,"CCGT D1_Integrated Programme Schedule;M&E;Procurement;CLP Deliverables",1,3,0.0000000659,0.0036622584,0.0002034588,0,1.0,0.0000812387,0.0068493151,0.0092307692,0.0000994792,0.0093994778,0.0006435006,0.0,1.0,0.0
1.3.2.1-22,EDS.1080,"Equipment Delivery by Siemens - Electrical, Control & Instrumentation (for Generator Steam Turbine)",7112,"CCGTD1_IPS",TT_Mile,"58319",-,-,-,100,TK_Complete,30/11/2019,13/04/2019,30/11/2019,13/04/2019,"A1010 FS","A1010","10MKF50 SF,10MBV1050 FS,10MA-1660 FS,10MAL50 FS,10MAJ50 FS,10MBP50 FS,10MKQ50 FS,10MAN1060 FS,10MBA5x50 FS,10MAV50 FS,10MKG50 SS,10MBA18-150 FS,10MAL50 SS,10MKG50 FS,10MBH50 FS,10MKA1095 FS,10MKF50 FS,10MBA4x50 FS,10MBU50 FS,10MKW50 FS,10MA1450 FS,10MKF50 SS,10MBX2x50 FS,10MAJ50 SS","10MKF50,10MBV1050,10MA-1660,10MAL50,10MAJ50,10MBP50,10MKQ50,10MAN1060,10MBA5x50,10MAV50,10MKG50,10MBA18-150,10MAL50,10MKG50,10MBH50,10MKA1095,10MKF50,10MBA4x50,10MBU50,10MKW50,10MA1450,10MKF50,10MBX2x50,10MAJ50",226,230,226,230,52,53,52,53,83,,"CCGT D1_Integrated Programme Schedule;M&E;Procurement;CLP Deliverables",1,19,0.0000010095,0.0211597152,0.0002034588,0,1.0,0.0000812387,0.0068493151,0.0584615385,0.0015238715,0.054308094,0.0006435006,0.0,1.0,0.0
1.3.2.1-23,EDS.1090,"Equipment Delivery by Siemens - Electrical, Control & Instrumentation (for BOP)",7112,"CCGTD1_IPS",TT_Mile,"58319",-,-,-,100,TK_Complete,30/11/2019,24/04/2019,30/11/2019,24/04/2019,"A1010 FS","A1010","00EG-01-50 FS,00SCA140 FS,10MKQ50 FS,10PCB50 FS,00PUN40 FS,10LDK-50 FS,10PAH50 FS,10QCC50 FS,GKB40 FS,10GHC40 FS,00EG-02-40 FS,10QCD50 FS,00PUS100 FS,10PGB1050 FS,10PAB-01-50 FS,00STG50 FS,00SCA50 FS,00GHD-140 FS,10EK40 FS,10QU50 FS,10PAB-02-50 FS","00EG-01-50,00SCA140,10MKQ50,10PCB50,00PUN40,10LDK-50,10PAH50,10QCC50,GKB40,10GHC40,00EG-02-40,10QCD50,00PUS100,10PGB1050,10PAB-01-50,00STG50,00SCA50,00GHD-140,10EK40,10QU50,10PAB-02-50",226,231,226,231,52,54,52,54,83,,"CCGT D1_Integrated Programme Schedule;M&E;Procurement;CLP Deliverables",1,21,0.0000005607,0.0201424212,0.0002034588,0,1.0,0.0000812387,0.0068493151,0.0646153846,0.0008463542,0.0516971279,0.0006435006,0.0,1.0,0.0
1.3.2.1-24,EDKS.1000,"Equipment Purchasing - Switchboard of fuel oil system",7112,"CCGTD1_IPS",TT_Mile,"58319",-,-,-,100,TK_Complete,30/11/2019,08/06/2019,30/11/2019,08/06/2019,"A1010 FS","A1010","00EG-02-40 FS","00EG-02-40",226,238,226,238,52,55,52,55,83,,"CCGT D1_Integrated Programme Schedule;M&E;Procurement;CLP Deliverables",1,1,0.0000000155,0.0026449644,0.0002034588,0,1.0,0.0000812387,0.0068493151,0.0030769231,0.0000234375,0.0067885117,0.0006435006,0.0,1.0,0.0
1.3.2.1-25,EDKS.1010,"Equipment Purchasing - Switchboard of reserved feed water system",7112,"CCGTD1_IPS",TT_Mile,"58319",-,-,-,100,TK_Complete,30/11/2019,08/06/2019,30/11/2019,08/06/2019,"A1010 FS","A1010","","",226,238,226,238,52,55,52,55,83,,"CCGT D1_Integrated Programme Schedule;M&E;Procurement;CLP Deliverables",1,0,0.0,0.0,0.0002034588,0,1.0,0.0000812387,0.0068493151,0.0,0.0,0.0,0.0006435006,0.0,1.0,0.0
1.3.2.1-26,SI1PAA4-50,"Equipment Delivery UMC Crane",7112,"CCGTD1_IPS",TT_Mile,"58319",-,-,-,100,TK_Complete,26/04/2018,01/01/2018,26/04/2018,01/01/2018,"A1010 FS","A1010","KD_C04 FS","KD_C04",143,163,143,163,33,38,33,38,26,,"CCGT D1_Integrated Programme Schedule;M&E;Procurement;CLP Deliverables",1,1,0.0,0.1084435402,0.0002034588,0,1.0,0.0000812387,0.0068493151,0.0030769231,0.0,0.2783289817,0.0006435006,0.0,1.0,0.0
1.3.2.1-27,SI0ACA4-55,"Equip Delivery - Feedwater Pumps LAC",7112,"CCGTD1_IPS",TT_Mile,"58319",-,-,-,100,TK_Complete,30/11/2019,15/02/2019,30/11/2019,15/02/2019,"A1010 FS","A1010","10LAC10 FS","10LAC10",226,222,226,222,52,51,52,51,83,,"CCGT D1_Integrated Programme Schedule;M&E;Procurement;CLP Deliverables",1,1,0.0000000138,0.0095625636,0.0002034588,0,1.0,0.0000812387,0.0068493151,0.0030769231,0.0000208333,0.0245430809,0.0006435006,0.0,1.0,0.0
1.3.2.1-28,P1010,"ST LP Outer Casing on-site",7112,"CCGTD1_IPS",TT_FinMile,"58319",-,-,-,100,TK_Complete,26/04/2018,02/04/2018,26/04/2018,02/04/2018,"A1010 FS","A1010","10MAC-1010 FS","10MAC-1010",143,176,143,176,33,41,33,41,26,,"CCGT D1_Integrated Programme Schedule;M&E;Procurement;CLP Deliverables",1,1,0.0000027327,0.0549338759,0.0002034588,0,1.0,0.0000812387,0.0068493151,0.0030769231,0.004125,0.1409921671,0.0006435006,0.0,1.0,0.0
1.3.2.1-29,SI1MKA4-25,"Equipment Delivery by Siemens - Generator MK",7112,"CCGTD1_IPS",TT_Mile,"58319",-,-,-,100,TK_Complete,26/04/2018,28/03/2018,26/04/2018,28/03/2018,"A1010 FS","A1010","10MKQ10 FS,10MKA1000 FS,10MKW10 FS,10MKA1010 FS,10MKG10 FS,10MKA1070 FS,10MBA1100 FS","10MKQ10,10MKA1000,10MKW10,10MKA1010,10MKG10,10MKA1070,10MBA1100",143,175,143,175,33,41,33,41,26,,"CCGT D1_Integrated Programme Schedule;M&E;Procurement;CLP Deliverables",1,7,0.0000012111,0.0282807731,0.0002034588,0,1.0,0.0000812387,0.0068493151,0.0215384615,0.001828125,0.0725848564,0.0006435006,0.0,1.0,0.0
1.3.2.1-30,SI1MKA4E25,"Equipment Delivery by Siemens - Generator Skids MKA",7112,"CCGTD1_IPS",TT_Mile,"58319",-,-,-,100,TK_Complete,29/09/2018,01/08/2018,29/09/2018,01/08/2018,"A1010 FS","A1010","10MKF10 SS,10MKA1020 FS,10MKF10 FS","10MKF10,10MKA1020,10MKF10",165,193,165,193,38,45,38,45,37,,"CCGT D1_Integrated Programme Schedule;M&E;Procurement;CLP Deliverables",1,2,0.0000000725,0.0246185148,0.0002034588,0,1.0,0.0000812387,0.0068493151,0.0061538462,0.000109375,0.0631853786,0.0006435006,0.0,1.0,0.0
1.3.2.1-31,SI1BAT4-25,"Equipment Delivery by Siemens - Main Transformer BAT",7112,"CCGTD1_IPS",TT_Mile,"58319",-,-,-,100,TK_Complete,15/05/2018,05/05/2018,15/05/2018,05/05/2018,"A1010 FS","A1010","10BAT10 FS","10BAT10",145,181,145,181,34,42,34,42,28,,"CCGT D1_Integrated Programme Schedule;M&E;Procurement;CLP Deliverables",1,1,0.0000000207,0.0107833164,0.0002034588,0,1.0,0.0000812387,0.0068493151,0.0030769231,0.00003125,0.0276762402,0.0006435006,0.0,1.0,0.0
1.3.2.1-32,SI1MBA4-25,"Equipment Delivery by Siemens - Gas Turbine MB",7112,"CCGTD1_IPS",TT_Mile,"58319",-,-,-,100,TK_Complete,26/04/2018,27/03/2018,26/04/2018,27/03/2018,"A1010 FS","A1010","10MBA1060 FS","10MBA1060",143,175,143,175,33,40,33,40,26,,"CCGT D1_Integrated Programme Schedule;M&E;Procurement;CLP Deliverables",1,1,0.0000003312,0.0164801628,0.0002034588,0,1.0,0.0000812387,0.0068493151,0.0030769231,0.0005,0.0422976501,0.0006435006,0.0,1.0,0.0
1.3.2.1-33,SI1HA-4C40,"Equipment Delivery by Siemens - HRSG Modules",7112,"CCGTD1_IPS",TT_Mile,"58319",-,-,-,100,TK_Complete,26/04/2018,30/03/2018,26/04/2018,30/03/2018,"A1010 FS","A1010","HRS10.1060 FS","HRS10.1060",143,176,143,176,33,41,33,41,26,,"CCGT D1_Integrated Programme Schedule;M&E;Procurement;CLP Deliverables",1,1,0.0000000138,0.0160732452,0.0002034588,0,1.0,0.0000812387,0.0068493151,0.0030769231,0.0000208333,0.0412532637,0.0006435006,0.0,1.0,0.0
1.3.2.1-34,SI1MAG4-40,"Equipment Delivery by Siemens - Steam Condenser MAG",7112,"CCGTD1_IPS",TT_Mile,"58319",-,-,-,100,TK_Complete,02/04/2018,02/04/2018,02/04/2018,02/04/2018,"A1010 FS","A1010","A1620 FS,A1630 FS,KD_C04 FS","A1620,A1630,KD_C04",139,176,139,176,32,41,32,41,24,,"CCGT D1_Integrated Programme Schedule;M&E;Procurement;CLP Deliverables",1,3,0.0000004968,0.108646999,0.0002034588,0,1.0,0.0000812387,0.0068493151,0.0092307692,0.00075,0.2788511749,0.0006435006,0.0,1.0,0.0
1.3.2.1-35,SI1MB-4E25,"Equipment Delivery by Siemens - Gas Turbine Auxiliaries MB",7112,"CCGTD1_IPS",TT_Mile,"58319",-,-,-,100,TK_Complete,30/08/2018,31/07/2018,30/08/2018,31/07/2018,"A1010 FS","A1010","10MBA18-100 FS,10MBU10 FS,10MBH10 FS,10MBA4x10 FS,10MBN10 FS,10MBX05 FS,00MBU10 FS,10MBV1090 FS,10MBP20 FS,10MBV1000 FS,10MBA1020 FS,TOP1300 FS,10MBX2x05 FS,10MBA5x05 FS","10MBA18-100,10MBU10,10MBH10,10MBA4x10,10MBN10,10MBX05,00MBU10,10MBV1090,10MBP20,10MBV1000,10MBA1020,TOP1300,10MBX2x05,10MBA5x05",161,193,161,193,37,45,37,45,35,,"CCGT D1_Integrated Programme Schedule;M&E;Procurement;CLP Deliverables",1,14,0.0000006901,0.0392675483,0.0002034588,0,1.0,0.0000812387,0.0068493151,0.0430769231,0.0010416667,0.1007832898,0.0006435006,0.0,1.0,0.0
1.3.2.1-36,SI1MBL4-40,"Equipment Delivery by Siemens - GT Air Intake System MBL",7112,"CCGTD1_IPS",TT_Mile,"58319",-,-,-,100,TK_Complete,23/03/2018,31/03/2018,23/03/2018,31/03/2018,"A1010 FS","A1010","10MBL1000 FS","10MBL1000",138,176,138,176,32,41,32,41,23,,"CCGT D1_Integrated Programme Schedule;M&E;Procurement;CLP Deliverables",1,1,0.0000000345,0.0170905392,0.0002034588,0,1.0,0.0000812387,0.0068493151,0.0030769231,0.0000520833,0.0438642298,0.0006435006,0.0,1.0,0.0
1.3.2.1-37,SI1MPB4E25,"Equipment Delivery by Siemens - GT Enclosure Incl. Ventilation MPB/SAM",7112,"CCGTD1_IPS",TT_Mile,"58319",-,-,-,100,TK_Complete,01/03/2018,22/02/2018,01/03/2018,22/02/2018,"A1010 FS","A1010","10MBA1067 FS","10MBA1067",135,170,135,170,31,39,31,39,21,,"CCGT D1_Integrated Programme Schedule;M&E;Procurement;CLP Deliverables",1,1,0.000000176,0.0059003052,0.0002034588,0,1.0,0.0000812387,0.0068493151,0.0030769231,0.000265625,0.0151436031,0.0006435006,0.0,1.0,0.0
1.3.2.1-38,SI1MA-4-59,"Equipment Delivery by Siemens - Steam Turbine MA- (HP/IP) AUX. (Incl. FCA)",7112,"CCGTD1_IPS",TT_Mile,"58319",-,-,-,100,TK_Complete,30/08/2018,31/07/2018,30/08/2018,31/07/2018,"A1010 FS","A1010","10MA-1150 FS","10MA-1150",161,193,161,193,37,45,37,45,35,,"CCGT D1_Integrated Programme Schedule;M&E;Procurement;CLP Deliverables",1,1,0.0000000828,0.0671414039,0.0002034588,0,1.0,0.0000812387,0.0068493151,0.0030769231,0.000125,0.1723237598,0.0006435006,0.0,1.0,0.0
1.3.2.1-39,SI1MAD4-25,"Equipment Delivery by Siemens - Steam Turbine Bearings MAD",7112,"CCGTD1_IPS",TT_Mile,"58319",-,-,-,100,TK_Complete,01/03/2018,09/01/2018,01/03/2018,09/01/2018,"A1010 FS","A1010","10MA-1150 FS","10MA-1150",135,164,135,164,31,38,31,38,21,,"CCGT D1_Integrated Programme Schedule;M&E;Procurement;CLP Deliverables",1,1,0.0000000828,0.0671414039,0.0002034588,0,1.0,0.0000812387,0.0068493151,0.0030769231,0.000125,0.1723237598,0.0006435006,0.0,1.0,0.0
1.3.2.1-40,SI1MAV4-40,"Equipment Delivery by Siemens - ST Lube oil Module MAV",7112,"CCGTD1_IPS",TT_Mile,"58319",-,-,-,100,TK_Complete,26/04/2018,31/03/2018,26/04/2018,31/03/2018,"A1010 FS","A1010","10MBV1000 FS,10MBV1090 FS,10MAV1001 FS,10MAV10 FS","10MBV1000,10MBV1090,10MAV1001,10MAV10",143,176,143,176,33,41,33,41,26,,"CCGT D1_Integrated Programme Schedule;M&E;Procurement;CLP Deliverables",1,4,0.0000001346,0.0276703967,0.0002034588,0,1.0,0.0000812387,0.0068493151,0.0123076923,0.000203125,0.0710182768,0.0006435006,0.0,1.0,0.0
1.3.2.1-41,SI1MAX4-40,"Equipment Delivery by Siemens - ST Hydraulic System MAX",7112,"CCGTD1_IPS",TT_Mile,"58319",-,-,-,100,TK_Complete,26/04/2018,28/03/2018,26/04/2018,28/03/2018,"A1010 FS","A1010","10MAX10 FS,10MAX20 FS","10MAX10,10MAX20",143,175,143,175,33,41,33,41,26,,"CCGT D1_Integrated Programme Schedule;M&E;Procurement;CLP Deliverables",1,2,0.0000001242,0.0046795524,0.0002034588,0,1.0,0.0000812387,0.0068493151,0.0061538462,0.0001875,0.0120104439,0.0006435006,0.0,1.0,0.0
1.3.2.1-42,SI1PAA4-40,"Equipment Delivery by Siemens - Cooling Water Bar Screen for PAB System",7112,"CCGTD1_IPS",TT_Mile,"58319",-,-,-,100,TK_Complete,26/05/2018,29/05/2018,26/05/2018,29/05/2018,"A1010 FS","A1010","00PAA10 FS","00PAA10",147,184,147,184,34,43,34,43,28,,"CCGT D1_Integrated Programme Schedule;M&E;Procurement;CLP Deliverables",1,1,0.0,0.0054933876,0.0002034588,0,1.0,0.0000812387,0.0068493151,0.0030769231,0.0,0.0140992167,0.0006435006,0.0,1.0,0.0
1.3.2.1-43,SI1UPY4-40,"Equipment Delivery by Siemens - Condenser Tube Cleaning System PAH - Module UPY00Y",7112,"CCGTD1_IPS",TT_Mile,"58319",-,-,-,100,TK_Complete,30/11/2019,15/11/2018,30/11/2019,15/11/2018,"A1010 FS","A1010","10PAH10 FS,10PAB-02-10 FS","10PAH10,10PAB-02-10",226,208,226,208,52,48,52,48,83,,"CCGT D1_Integrated Programme Schedule;M&E;Procurement;CLP Deliverables",1,2,0.0,0.0138351984,0.0002034588,0,1.0,0.0000812387,0.0068493151,0.0061538462,0.0,0.0355091384,0.0006435006,0.0,1.0,0.0
1.3.2.1-44,SI1HA-4D40,"Equipment Delivery by Siemens - Drums of HRSG",7112,"CCGTD1_IPS",TT_Mile,"58319",-,-,-,100,TK_Complete,26/04/2018,27/04/2018,26/04/2018,27/04/2018,"A1010 FS","A1010","HRS10.1050 FS","HRS10.1050",143,180,143,180,33,42,33,42,26,,"CCGT D1_Integrated Programme Schedule;M&E;Procurement;CLP Deliverables",1,1,0.0000000414,0.012207528,0.0002034588,0,1.0,0.0000812387,0.0068493151,0.0030769231,0.0000625,0.0313315927,0.0006435006,0.0,1.0,0.0
1.3.2.1-45,SI1HAD4E40,"Equipment Delivery by Siemens - Piping Material HRSG",7112,"CCGTD1_IPS",TT_Mile,"58319",-,-,-,100,TK_Complete,06/11/2018,01/10/2018,06/11/2018,01/10/2018,"A1010 FS","A1010","10HAD80-20 FS,10HAD10-20 FS,10HAD50-20 FS,10HAA20 FS,HRS11.1170 FS","10HAD80-20,10HAD10-20,10HAD50-20,10HAA20,HRS11.1170",170,202,170,202,39,47,39,47,38,,"CCGT D1_Integrated Programme Schedule;M&E;Procurement;CLP Deliverables",1,5,0.0000006055,0.0144455748,0.0002034588,0,1.0,0.0000812387,0.0068493151,0.0153846154,0.0009140625,0.037075718,0.0006435006,0.0,1.0,0.0
1.3.2.1-46,SI1HB-4A40,"Equipment Delivery by Siemens - Main Steel Structure HRSG",7112,"CCGTD1_IPS",TT_Mile,"58319",-,-,-,100,TK_Complete,05/03/2018,03/03/2018,05/03/2018,03/03/2018,"A1010 FS","A1010","HRS09.1020 FS","HRS09.1020",135,172,135,172,31,40,31,40,21,,"CCGT D1_Integrated Programme Schedule;M&E;Procurement;CLP Deliverables",1,1,0.0000001035,0.0179043744,0.0002034588,0,1.0,0.0000812387,0.0068493151,0.0030769231,0.00015625,0.0459530026,0.0006435006,0.0,1.0,0.0
1.3.2.1-47,SI1MAL4-40,"Equipment Delivery by Siemens - Steam Turbine Drain Skid MAL00Y Module",7112,"CCGTD1_IPS",TT_Mile,"58319",-,-,-,100,TK_Complete,26/04/2018,27/04/2018,26/04/2018,27/04/2018,"A1010 FS","A1010","10MAL10 FS","10MAL10",143,180,143,180,33,42,33,42,26,,"CCGT D1_Integrated Programme Schedule;M&E;Procurement;CLP Deliverables",1,1,0.0000000207,0.0042726348,0.0002034588,0,1.0,0.0000812387,0.0068493151,0.0030769231,0.00003125,0.0109660574,0.0006435006,0.0,1.0,0.0
1.3.2.1-48,SI1UMC4X40,"Equipment Delivery by Siemens - Module Pipe Rack UMCM1Y",7112,"CCGTD1_IPS",TT_Mile,"58319",-,-,-,100,TK_Complete,26/05/2018,28/05/2018,26/05/2018,28/05/2018,"A1010 FS","A1010","PMS14.1020 FS","PMS14.1020",147,184,147,184,34,43,34,43,28,,"CCGT D1_Integrated Programme Schedule;M&E;Procurement;CLP Deliverables",1,1,0.0000000759,0.0221770092,0.0002034588,0,1.0,0.0000812387,0.0068493151,0.0030769231,0.0001145833,0.0569190601,0.0006435006,0.0,1.0,0.0
1.3.2.1-49,SI1UMC4Y40,"Equipment Delivery by Siemens - Module Pipe Rack UMCL1Y",7112,"CCGTD1_IPS",TT_Mile,"58319",-,-,-,100,TK_Complete,27/04/2018,27/04/2018,27/04/2018,27/04/2018,"A1010 FS","A1010","PMS14.1050 FS","PMS14.1050",143,180,143,180,33,42,33,42,26,,"CCGT D1_Integrated Programme Schedule;M&E;Procurement;CLP Deliverables",1,1,0.0000000759,0.0048830112,0.0002034588,0,1.0,0.0000812387,0.0068493151,0.0030769231,0.0001145833,0.0125326371,0.0006435006,0.0,1.0,0.0
1.3.2.1-50,SI1--P4A40,"Equipment Delivery by Siemens - Supply Piping DN >=80",7112,"CCGTD1_IPS",TT_Mile,"58319",-,-,-,100,TK_Complete,30/11/2019,15/09/2018,30/11/2019,15/09/2018,"A1010 FS","A1010","10LCL20 FS,10MKG30 FS,00GHD-120 FS,10PAH30 FS,00GM-03-20 FS,10MAX30 FS,10GM-02-40 FS,10PAH20 FS,00PUN20 FS,10MAW30 FS,10MBA4x30 FS,00EK20 FS,10MAN1020 FS,10MBX30 FS,10LAC30 FS,10MBA5x30 FS,10GM-02-120 FS,10MBU30 FS,10PCB20 FS,10LAC20 FS,00EK30 FS,10MAV30 FS,10MAL30 FS,10MBA4x20 FS,10MBV1030 FS,10PCB30 FS,10GM-02-30 FS,10MAJ20 FS,00EG-02-30 FS,00EG-01-30 FS,10MBN30 FS,10MBX2x20 FS,00GHC-02-20 FS,10MAJ30 FS,00EG-01-20 FS,10MKF20 FS,10LAB30 FS,10LCA30 FS,10MBU20 FS,00GM-03-30 FS,10MAW40 FS,10LAB20 FS,10LDK-20 FS,10GHC20 FS,10PAB-01-20 FS,10QFB20 FS,00MBU20 FS,10GM-02-110 FS,00GHC-01-30 FS,10LBA80-20 FS,10MAV20 FS,10MBA5x20 FS,10MKF30 FS,10MKQ20 FS,10LCL30 FS,00SCA110 FS,00SCA20 FS,10MBX20 FS,00EG-02-20 FS,10LDK-30 FS,10MAL20 FS,10MKQ30 FS,00LBG20 FS,10MBA18-130 FS,10LCA40 FS,10MBP30 FS,10MBX2x30 FS,00GKB-02-20 FS,GKB20 FS,10PAB-01-30 FS,GKB30 FS,10MAX20 FS,10GM-01-30 FS,00PUN90 FF,00PUN40 FS,10MAN1060 FS","10LCL20,10MKG30,00GHD-120,10PAH30,00GM-03-20,10MAX30,10GM-02-40,10PAH20,00PUN20,10MAW30,10MBA4x30,00EK20,10MAN1020,10MBX30,10LAC30,10MBA5x30,10GM-02-120,10MBU30,10PCB20,10LAC20,00EK30,10MAV30,10MAL30,10MBA4x20,10MBV1030,10PCB30,10GM-02-30,10MAJ20,00EG-02-30,00EG-01-30,10MBN30,10MBX2x20,00GHC-02-20,10MAJ30,00EG-01-20,10MKF20,10LAB30,10LCA30,10MBU20,00GM-03-30,10MAW40,10LAB20,10LDK-20,10GHC20,10PAB-01-20,10QFB20,00MBU20,10GM-02-110,00GHC-01-30,10LBA80-20,10MAV20,10MBA5x20,10MKF30,10MKQ20,10LCL30,00SCA110,00SCA20,10MBX20,00EG-02-20,10LDK-30,10MAL20,10MKQ30,00LBG20,10MBA18-130,10LCA40,10MBP30,10MBX2x30,00GKB-02-20,GKB20,10PAB-01-30,GKB30,10MAX20,10GM-01-30,00PUN90,00PUN40,10MAN1060",226,200,226,200,52,46,52,46,83,,"CCGT D1_Integrated Programme Schedule;M&E;Procurement;CLP Deliverables",1,76,0.0000045427,0.093387589,0.0002034588,0,1.0,0.0000812387,0.0068493151,0.2338461538,0.0068572917,0.2396866841,0.0006435006,0.0,1.0,0.0
1.3.2.1-51,SI1--P4H40,"Equipment Delivery by Siemens - Supply Piping DN <80",7112,"CCGTD1_IPS",TT_Mile,"58319",-,-,-,100,TK_Complete,30/11/2019,15/09/2018,30/11/2019,15/09/2018,"A1010 FS","A1010","10PAB-01-20 FS,10MBU20 FS,10GM-02-110 FS,10MBA5x30 FS,10MBA4x20 FS,00SCA110 FS,00EK30 FS,10MAN1020 FS,10MKQ20 FS,10MAW40 FS,10MBP30 FS,10MBA4x30 FS,10PAB-01-30 FS,10LCL30 FS,00GM-03-20 FS,10PCB30 FS,10MAX30 FS,10MAJ30 FS,10MBV1030 FS,10LDK-30 FS,10MBA5x20 FS,10LBA80-20 FS,10LAC20 FS,10MBN30 FS,00GKB-02-20 FS,10MAJ20 FS,10GM-02-30 FS,10MBU30 FS,10MKQ30 FS,00GHD-120 FS,10MKF30 FS,10LAC30 FS,10PCB20 FS,00PUN20 FS,00EG-02-10 FS,10MBX30 FS,10MBX2x20 FS,10LAB30 FS,10LCA40 FS,10LCL20 FS,00EG-01-20 FS,00EG-02-30 FS,10MAX20 FS,10GM-02-40 FS,GKB20 FS,10MAW30 FS,10MAL30 FS,10MBX2x30 FS,10GM-02-120 FS,10LAB20 FS,10MBX20 FS,10MBA18-130 FS,00MBU20 FS,10MKG30 FS,10LCA30 FS,10MKF20 SS,00EK20 FS,10MAV20 FS,00GHC-02-20 FS,00LBG20 FS,10MAV30 FS,10QFB20 FS,10PAH30 FS,10LDK-20 FS,10GM-01-30 FS,10PAH20 FS,00EG-02-20 FS,10GHC20 FS,00SCA20 FS,10MAL20 FS,00GM-03-30 FS,00EG-01-30 FS,GKB30 FS,00PUN90 FF,00PUN40 FS,10MAN1060 FS","10PAB-01-20,10MBU20,10GM-02-110,10MBA5x30,10MBA4x20,00SCA110,00EK30,10MAN1020,10MKQ20,10MAW40,10MBP30,10MBA4x30,10PAB-01-30,10LCL30,00GM-03-20,10PCB30,10MAX30,10MAJ30,10MBV1030,10LDK-30,10MBA5x20,10LBA80-20,10LAC20,10MBN30,00GKB-02-20,10MAJ20,10GM-02-30,10MBU30,10MKQ30,00GHD-120,10MKF30,10LAC30,10PCB20,00PUN20,00EG-02-10,10MBX30,10MBX2x20,10LAB30,10LCA40,10LCL20,00EG-01-20,00EG-02-30,10MAX20,10GM-02-40,GKB20,10MAW30,10MAL30,10MBX2x30,10GM-02-120,10LAB20,10MBX20,10MBA18-130,00MBU20,10MKG30,10LCA30,10MKF20,00EK20,10MAV20,00GHC-02-20,00LBG20,10MAV30,10QFB20,10PAH30,10LDK-20,10GM-01-30,10PAH20,00EG-02-20,10GHC20,00SCA20,10MAL20,00GM-03-30,00EG-01-30,GKB30,00PUN90,00PUN40,10MAN1060",226,200,226,200,52,46,52,46,83,,"CCGT D1_Integrated Programme Schedule;M&E;Procurement;CLP Deliverables",1,76,0.0000044461,0.0937945066,0.0002034588,0,1.0,0.0000812387,0.0068493151,0.2338461538,0.0067114583,0.2407310705,0.0006435006,0.0,1.0,0.0
1.3.2.1-52,SI1BBT4-25,"Equipment Delivery by Siemens - Main Transformer BBT",7112,"CCGTD1_IPS",TT_Mile,"58319",-,-,-,100,TK_Complete,21/03/2018,03/02/2018,21/03/2018,03/02/2018,"A1010 FS","A1010","10BAT10 FS","10BAT10",138,168,138,168,32,39,32,39,23,,"CCGT D1_Integrated Programme Schedule;M&E;Procurement;CLP Deliverables",1,1,0.0000000207,0.0107833164,0.0002034588,0,1.0,0.0000812387,0.0068493151,0.0030769231,0.00003125,0.0276762402,0.0006435006,0.0,1.0,0.0
1.3.2.1-53,SI1BAA4-25,"Equipment Delivery by Siemens - Isolated Generator Busduct 10BAA",7112,"CCGTD1_IPS",TT_Mile,"58319",-,-,-,100,TK_Complete,30/11/2019,01/04/2019,30/11/2019,01/04/2019,"A1010 FS","A1010","10BAC10 FS,10BA20 FS","10BAC10,10BA20",226,228,226,228,52,53,52,53,83,,"CCGT D1_Integrated Programme Schedule;M&E;Procurement;CLP Deliverables",1,2,0.0000004968,0.01017294,0.0002034588,0,1.0,0.0000812387,0.0068493151,0.0061538462,0.00075,0.0261096606,0.0006435006,0.0,1.0,0.0
1.3.2.1-54,SI1BFT4-25,"Equipment Delivery by Siemens - LV Transformer BFT",7112,"CCGTD1_IPS",TT_Mile,"58319",-,-,-,100,TK_Complete,26/05/2018,15/05/2018,26/05/2018,15/05/2018,"A1010 FS","A1010","10SFC-10 FS","10SFC-10",147,182,147,182,34,42,34,42,28,,"CCGT D1_Integrated Programme Schedule;M&E;Procurement;CLP Deliverables",1,1,0.0000000069,0.0048830112,0.0002034588,0,1.0,0.0000812387,0.0068493151,0.0030769231,0.0000104167,0.0125326371,0.0006435006,0.0,1.0,0.0
1.3.2.1-55,SI0ACA4-45,"Equipment Delivery by Siemens - HV Switchgear GIL",7112,"CCGTD1_IPS",TT_Mile,"58319",-,-,-,100,TK_Complete,30/11/2019,10/04/2019,30/11/2019,10/04/2019,"A1010 FS","A1010","10AC10 FS","10AC10",226,229,226,229,52,53,52,53,83,,"CCGT D1_Integrated Programme Schedule;M&E;Procurement;CLP Deliverables",1,1,0.0000000414,0.012207528,0.0002034588,0,1.0,0.0000812387,0.0068493151,0.0030769231,0.0000625,0.0313315927,0.0006435006,0.0,1.0,0.0
1.3.2.1-56,SI-BZP4-25,"First Cables Support System (BZP) (for Pre-Fab Modules) on-site",7112,"CCGTD1_IPS",TT_FinMile,"58319",-,-,-,100,TK_Complete,14/05/2018,29/12/2017,14/05/2018,29/12/2017,"A1010 FS","A1010","CP-BZK7G25 FS,CP1BZK7A25 FS,CP-BZK7H25 FS,CP-BZK7C25 FS,CP1BZK7B25 FS,10EK40 FS,00CR10 FS,CP1BZK7J25 FS,CP1BZK7D25 FS,CP-BZK7B2 FS,CP-BZK7A25 FS,CP-BZK7E25 FS,10PAB-02-50 FS,CP-BZK7I25 FS,00EG-02-40 FS,10PGB1050 FS,CP-BZK7F25 FS,10PCB50 FS,10PAB-01-50 FS,00EG-01-50 FS,10PAH50 FS","CP-BZK7G25,CP1BZK7A25,CP-BZK7H25,CP-BZK7C25,CP1BZK7B25,10EK40,00CR10,CP1BZK7J25,CP1BZK7D25,CP-BZK7B2,CP-BZK7A25,CP-BZK7E25,10PAB-02-50,CP-BZK7I25,00EG-02-40,10PGB1050,CP-BZK7F25,10PCB50,10PAB-01-50,00EG-01-50,10PAH50",145,163,145,163,34,38,34,38,27,,"CCGT D1_Integrated Programme Schedule;M&E;Procurement;CLP Deliverables",1,21,0.0000009444,0.0307222787,0.0002034588,0,1.0,0.0000812387,0.0068493151,0.0646153846,0.0014255208,0.0788511749,0.0006435006,0.0,1.0,0.0
1.3.2.1-57,SI1PCB4B25,"Service Cooling Water Pump (PCB) on-site",7112,"CCGTD1_IPS",TT_FinMile,"58319",-,-,-,100,TK_Complete,12/03/2018,14/03/2018,12/03/2018,14/03/2018,"A1010 FS","A1010","10PCB20 FS,10PCB10 FS","10PCB20,10PCB10",136,173,136,173,31,40,31,40,22,,"CCGT D1_Integrated Programme Schedule;M&E;Procurement;CLP Deliverables",1,2,0.0000000092,0.004069176,0.0002034588,0,1.0,0.0000812387,0.0068493151,0.0061538462,0.0000138889,0.0104438642,0.0006435006,0.0,1.0,0.0
1.3.2.1-58,SI1SMM4-25,"Cranes SMM01/ 02 for (UMC) on-site",7112,"CCGTD1_IPS",TT_FinMile,"58319",-,-,-,100,TK_Complete,01/03/2018,01/01/2018,01/03/2018,01/01/2018,"A1010 FS","A1010","KD_C04 FS","KD_C04",135,163,135,163,31,38,31,38,21,,"CCGT D1_Integrated Programme Schedule;M&E;Procurement;CLP Deliverables",1,1,0.0,0.1084435402,0.0002034588,0,1.0,0.0000812387,0.0068493151,0.0030769231,0.0,0.2783289817,0.0006435006,0.0,1.0,0.0
1.3.2.1-59,SI1PGB4C25,"Heat Exchanger (PGB) on-site",7112,"CCGTD1_IPS",TT_FinMile,"58319",-,-,-,100,TK_Complete,02/04/2018,13/03/2018,02/04/2018,13/03/2018,"A1010 FS","A1010","","",139,173,139,173,32,40,32,40,24,,"CCGT D1_Integrated Programme Schedule;M&E;Procurement;CLP Deliverables",1,0,0.0,0.0,0.0002034588,0,1.0,0.0000812387,0.0068493151,0.0,0.0,0.0,0.0006435006,0.0,1.0,0.0
1.3.2.1-60,SI-BZP4-27,"First Cables Support System (BZP) (Main) on-site",7112,"CCGTD1_IPS",TT_FinMile,"58319",-,-,-,100,TK_Complete,30/11/2019,22/10/2018,30/11/2019,22/10/2018,"A1010 FS","A1010","10BAT10 FS,10BH20 FS,00BAW-01-40 FS,10BZL-03-20 FS,10SFC-10 FS,10BZL-02-20 FS,10CP-WS60 FS,00CR10 FS,00BAW-03-40 FS,00BAW-02-40 FS,10AC20 FS,CP1BZP7G15 FS,10BBE20 FS,CP-BZP7B15 FS,10BF20 FS,CP1BZP7D15 FS,10BZL-01-20 FS,00BZL-03-20 FS,10CP-AA60 FS,10BBT10 FS,00XKA40 FS,CP-BZP7A15 FS,10CP-HR60 FS,CP1BZP7F15 FS,CP1BZP7C15 FS,CP1BZP7A15 FS,10CP-ST-60 FS,00BHV10 FS,10SEE-10 FS,00BZL-01-30 FS,00BZL-02-30 FS","10BAT10,10BH20,00BAW-01-40,10BZL-03-20,10SFC-10,10BZL-02-20,10CP-WS60,00CR10,00BAW-03-40,00BAW-02-40,10AC20,CP1BZP7G15,10BBE20,CP-BZP7B15,10BF20,CP1BZP7D15,10BZL-01-20,00BZL-03-20,10CP-AA60,10BBT10,00XKA40,CP-BZP7A15,10CP-HR60,CP1BZP7F15,CP1BZP7C15,CP1BZP7A15,10CP-ST-60,00BHV10,10SEE-10,00BZL-01-30,00BZL-02-30",226,205,226,205,52,47,52,47,83,,"CCGT D1_Integrated Programme Schedule;M&E;Procurement;CLP Deliverables",1,31,0.0000023297,0.0683621567,0.0002034588,0,1.0,0.0000812387,0.0068493151,0.0953846154,0.0035166667,0.1754569191,0.0006435006,0.0,1.0,0.0
1.3.2.1-61,SI1PGB4B25,"CCW Pumps (PGB) on-site",7112,"CCGTD1_IPS",TT_FinMile,"58319",-,-,-,100,TK_Complete,02/04/2018,13/03/2018,02/04/2018,13/03/2018,"A1010 FS","A1010","","",139,173,139,173,32,40,32,40,24,,"CCGT D1_Integrated Programme Schedule;M&E;Procurement;CLP Deliverables",1,0,0.0,0.0,0.0002034588,0,1.0,0.0000812387,0.0068493151,0.0,0.0,0.0,0.0006435006,0.0,1.0,0.0
1.3.2.1-62,SI1SMM4A25,"Cranes SMM03 for (UMC) on-site",7112,"CCGTD1_IPS",TT_FinMile,"58319",-,-,-,100,TK_Complete,01/03/2018,15/01/2018,01/03/2018,15/01/2018,"A1010 FS","A1010","KD_C04 FS","KD_C04",135,165,135,165,31,38,31,38,21,,"CCGT D1_Integrated Programme Schedule;M&E;Procurement;CLP Deliverables",1,1,0.0,0.1084435402,0.0002034588,0,1.0,0.0000812387,0.0068493151,0.0030769231,0.0,0.2783289817,0.0006435006,0.0,1.0,0.0
1.3.2.1-63,SI1LBG4C40,"Electrical Superheater LBG on-site",7112,"CCGTD1_IPS",TT_FinMile,"58319",-,-,-,100,TK_Complete,16/03/2018,15/03/2018,16/03/2018,15/03/2018,"A1010 FS","A1010","","",137,173,137,173,32,40,32,40,22,,"CCGT D1_Integrated Programme Schedule;M&E;Procurement;CLP Deliverables",1,0,0.0,0.0,0.0002034588,0,1.0,0.0000812387,0.0068493151,0.0,0.0,0.0,0.0006435006,0.0,1.0,0.0
1.3.2.1-64,SI1HB-4A25,"HRSG Main Steel Structure (Main Frame/Casing) on-site",7112,"CCGTD1_IPS",TT_FinMile,"58319",-,-,-,100,TK_Complete,03/03/2018,08/03/2018,03/03/2018,08/03/2018,"A1010 FS","A1010","HRS09.1020 FS","HRS09.1020",135,172,135,172,31,40,31,40,21,,"CCGT D1_Integrated Programme Schedule;M&E;Procurement;CLP Deliverables",1,1,0.0000001035,0.0179043744,0.0002034588,0,1.0,0.0000812387,0.0068493151,0.0030769231,0.00015625,0.0459530026,0.0006435006,0.0,1.0,0.0
1.3.2.1-65,SI-SGA4A25,"Fire Fighting Ring Main (SGA) on-site",7112,"CCGTD1_IPS",TT_FinMile,"58319",-,-,-,100,TK_Complete,30/11/2019,23/05/2019,30/11/2019,23/05/2019,"A1010 FS","A1010","10SGA-02-10 FS,00SGM-01-10 FS","10SGA-02-10,00SGM-01-10",226,235,226,235,52,55,52,55,83,,"CCGT D1_Integrated Programme Schedule;M&E;Procurement;CLP Deliverables",1,2,0.0,0.0048830112,0.0002034588,0,1.0,0.0000812387,0.0068493151,0.0061538462,0.0,0.0125326371,0.0006435006,0.0,1.0,0.0
1.3.2.1-66,SI1LCA4B25,"Condensate Recirculating Pump (LCA51) on-site",7112,"CCGTD1_IPS",TT_FinMile,"58319",-,-,-,100,TK_Complete,01/03/2018,10/02/2018,01/03/2018,10/02/2018,"A1010 FS","A1010","10LCA-02-10 FS","10LCA-02-10",135,169,135,169,31,39,31,39,21,,"CCGT D1_Integrated Programme Schedule;M&E;Procurement;CLP Deliverables",1,1,0.0,0.004069176,0.0002034588,0,1.0,0.0000812387,0.0068493151,0.0030769231,0.0,0.0104438642,0.0006435006,0.0,1.0,0.0
1.3.2.1-67,SI1PGB4D25,"Expansion Tank (PGB) on-site",7112,"CCGTD1_IPS",TT_FinMile,"58319",-,-,-,100,TK_Complete,02/04/2018,20/03/2018,02/04/2018,20/03/2018,"A1010 FS","A1010","10PCB20 FS","10PCB20",139,174,139,174,32,40,32,40,24,,"CCGT D1_Integrated Programme Schedule;M&E;Procurement;CLP Deliverables",1,1,0.0000000092,0.0038657172,0.0002034588,0,1.0,0.0000812387,0.0068493151,0.0030769231,0.0000138889,0.009921671,0.0006435006,0.0,1.0,0.0
1.3.2.1-68,SI1ULA3B25,"Steel Structure (ULA) on-site",7112,"CCGTD1_IPS",TT_FinMile,"58319",-,-,-,100,TK_Complete,30/11/2019,15/02/2019,30/11/2019,15/02/2019,"A1010 FS","A1010","10LAB10 FS,10LAC10 FS","10LAB10,10LAC10",226,222,226,222,52,51,52,51,83,,"CCGT D1_Integrated Programme Schedule;M&E;Procurement;CLP Deliverables",1,2,0.0000000276,0.0097660224,0.0002034588,0,1.0,0.0000812387,0.0068493151,0.0061538462,0.0000416667,0.0250652742,0.0006435006,0.0,1.0,0.0
1.3.2.1-69,SI1PDB4-25,"Debris Filer (PDB) on-site",7112,"CCGTD1_IPS",TT_FinMile,"58319",-,-,-,100,TK_Complete,02/04/2018,20/03/2018,02/04/2018,20/03/2018,"A1010 FS","A1010","00PAA10 FS","00PAA10",139,174,139,174,32,40,32,40,24,,"CCGT D1_Integrated Programme Schedule;M&E;Procurement;CLP Deliverables",1,1,0.0,0.0054933876,0.0002034588,0,1.0,0.0000812387,0.0068493151,0.0030769231,0.0,0.0140992167,0.0006435006,0.0,1.0,0.0
1.3.2.1-70,SI1MBR4-42,"Exhaust Gas Manifold (MBR) on-site",7112,"CCGTD1_IPS",TT_FinMile,"58319",-,-,-,100,TK_Complete,07/03/2018,10/03/2018,07/03/2018,10/03/2018,"A1010 FS","A1010","10MBR1000 FS,10MBR1010 FS","10MBR1000,10MBR1010",136,173,136,173,31,40,31,40,22,,"CCGT D1_Integrated Programme Schedule;M&E;Procurement;CLP Deliverables",1,2,0.0000000518,0.0032553408,0.0002034588,0,1.0,0.0000812387,0.0068493151,0.0061538462,0.000078125,0.0083550914,0.0006435006,0.0,1.0,0.0
1.3.2.1-71,SI1MBR4-40,"Exhaust Gas Diffuser (MBR) on-site",7112,"CCGTD1_IPS",TT_FinMile,"58319",-,-,-,100,TK_Complete,01/03/2018,02/03/2018,01/03/2018,02/03/2018,"A1010 FS","A1010","10MBR1010 FS,10MBR1000 FS","10MBR1010,10MBR1000",135,172,135,172,31,40,31,40,21,,"CCGT D1_Integrated Programme Schedule;M&E;Procurement;CLP Deliverables",1,2,0.0000000518,0.0032553408,0.0002034588,0,1.0,0.0000812387,0.0068493151,0.0061538462,0.000078125,0.0083550914,0.0006435006,0.0,1.0,0.0
1.3.2.1-72,SI1PBB4B45,"Debris Filter (PBB) on-site",7112,"CCGTD1_IPS",TT_FinMile,"58319",-,-,-,100,TK_Complete,01/03/2018,17/01/2018,01/03/2018,17/01/2018,"A1010 FS","A1010","00PAA10 FS","00PAA10",135,165,135,165,31,38,31,38,21,,"CCGT D1_Integrated Programme Schedule;M&E;Procurement;CLP Deliverables",1,1,0.0,0.0054933876,0.0002034588,0,1.0,0.0000812387,0.0068493151,0.0030769231,0.0,0.0140992167,0.0006435006,0.0,1.0,0.0
1.3.2.1-73,SI-CYE4-58,"Fire Alarm System (CYE) on-site",7112,"CCGTD1_IPS",TT_FinMile,"58319",-,-,-,100,TK_Complete,01/03/2018,28/02/2018,01/03/2018,28/02/2018,"A1010 FS","A1010","A3220 FS,TOP2370 FS","A3220,TOP2370",135,171,135,171,31,40,31,40,21,,"CCGT D1_Integrated Programme Schedule;M&E;Procurement;CLP Deliverables",1,2,0.0000000207,0.0024415056,0.0002034588,0,1.0,0.0000812387,0.0068493151,0.0061538462,0.00003125,0.0062663185,0.0006435006,0.0,1.0,0.0
1.3.2.1-74,SI-SG-4-56,"Fire Fighting Systems (SG) on-site",7112,"CCGTD1_IPS",TT_FinMile,"58319",-,-,-,100,TK_Complete,30/11/2019,15/02/2019,30/11/2019,15/02/2019,"A1010 FS","A1010","10SGA-02-10 FS,A3220 FS,00SGM-01-10 FS,TOP2370 FS","10SGA-02-10,A3220,00SGM-01-10,TOP2370",226,222,226,222,52,51,52,51,83,,"CCGT D1_Integrated Programme Schedule;M&E;Procurement;CLP Deliverables",1,4,0.0000000207,0.0054933876,0.0002034588,0,1.0,0.0000812387,0.0068493151,0.0123076923,0.00003125,0.0140992167,0.0006435006,0.0,1.0,0.0
1.3.2.1-75,SI1MAL4-25,"MAL00Y Module on-site",7112,"CCGTD1_IPS",TT_FinMile,"58319",-,-,-,100,TK_Complete,27/04/2018,27/04/2018,27/04/2018,27/04/2018,"A1010 FS","A1010","10MAL10 FS","10MAL10",143,180,143,180,33,42,33,42,26,,"CCGT D1_Integrated Programme Schedule;M&E;Procurement;CLP Deliverables",1,1,0.0000000207,0.0042726348,0.0002034588,0,1.0,0.0000812387,0.0068493151,0.0030769231,0.00003125,0.0109660574,0.0006435006,0.0,1.0,0.0
1.3.2.1-76,SI1HB-4E25,"HRSG Inlet Duct on-site",7112,"CCGTD1_IPS",TT_FinMile,"58319",-,-,-,100,TK_Complete,01/03/2018,03/03/2018,01/03/2018,03/03/2018,"A1010 FS","A1010","","",135,172,135,172,31,40,31,40,21,,"CCGT D1_Integrated Programme Schedule;M&E;Procurement;CLP Deliverables",1,0,0.0,0.0,0.0002034588,0,1.0,0.0000812387,0.0068493151,0.0,0.0,0.0,0.0006435006,0.0,1.0,0.0
1.3.2.1-77,SI1HB-4C25,"HRSG Steel Structure - Secondary Steel on-site",7112,"CCGTD1_IPS",TT_FinMile,"58319",-,-,-,100,TK_Complete,18/05/2018,19/05/2018,18/05/2018,19/05/2018,"A1010 FS","A1010","A2380 FS","A2380",146,183,146,183,34,42,34,42,28,,"CCGT D1_Integrated Programme Schedule;M&E;Procurement;CLP Deliverables",1,1,0.0000000138,0.0368260427,0.0002034588,0,1.0,0.0000812387,0.0068493151,0.0030769231,0.0000208333,0.0945169713,0.0006435006,0.0,1.0,0.0
1.3.2.1-78,SI1LCL4B40,"Steam Generator Drain Pump (LCL) on-site",7112,"CCGTD1_IPS",TT_FinMile,"58319",-,-,-,100,TK_Complete,16/03/2018,15/03/2018,16/03/2018,15/03/2018,"A1010 FS","A1010","10MAL10 FS","10MAL10",137,173,137,173,32,40,32,40,22,,"CCGT D1_Integrated Programme Schedule;M&E;Procurement;CLP Deliverables",1,1,0.0000000207,0.0042726348,0.0002034588,0,1.0,0.0000812387,0.0068493151,0.0030769231,0.00003125,0.0109660574,0.0006435006,0.0,1.0,0.0
1.3.2.1-79,SI-BZP4B25,"Second Cable Support System (BZP) (Main) on-site",7112,"CCGTD1_IPS",TT_FinMile,"58319",-,-,-,100,TK_Complete,30/11/2019,22/10/2018,30/11/2019,22/10/2018,"A1010 FS","A1010","CP1BZP7C15 FS,CP1BZP7F15 FS,CP1BZP7A15 FS,00CR10 FS,CP1BZP7D15 FS,CP-BZP7A15 FS,CP1BZL7A15 FS,CP1BZP7G15 FS,CP-BZP7B15 FS","CP1BZP7C15,CP1BZP7F15,CP1BZP7A15,00CR10,CP1BZP7D15,CP-BZP7A15,CP1BZL7A15,CP1BZP7G15,CP-BZP7B15",226,205,226,205,52,47,52,47,83,,"CCGT D1_Integrated Programme Schedule;M&E;Procurement;CLP Deliverables",1,9,0.0000001477,0.0317395727,0.0002034588,0,1.0,0.0000812387,0.0068493151,0.0276923077,0.0002229167,0.081462141,0.0006435006,0.0,1.0,0.0
1.3.2.1-80,SI1C--4-25,"ST I&C Field Instrumentation on-site",7112,"CCGTD1_IPS",TT_FinMile,"58319",-,-,-,100,TK_Complete,30/11/2019,15/04/2019,30/11/2019,15/04/2019,"A1010 FS","A1010","10HAD80-50 FS,10MKA1095 FS,10MAW60 FS,10MAN1060 FS,10MKF50 FS,10MA-1660 FS,10MAJ50 FS,10HAD50-50 FS,10MAL50 FS,10MA1450 FS,10MAV50 FS","10HAD80-50,10MKA1095,10MAW60,10MAN1060,10MKF50,10MA-1660,10MAJ50,10HAD50-50,10MAL50,10MA1450,10MAV50",226,230,226,230,52,53,52,53,83,,"CCGT D1_Integrated Programme Schedule;M&E;Procurement;CLP Deliverables",1,11,0.0000007102,0.0128179044,0.0002034588,0,1.0,0.0000812387,0.0068493151,0.0338461538,0.0010721354,0.0328981723,0.0006435006,0.0,1.0,0.0
1.3.2.1-81,SI-CR-4-40,"CCR Furniture and HMI Equipment on-site",7112,"CCGTD1_IPS",TT_FinMile,"58319",-,-,-,100,TK_Complete,30/11/2019,10/10/2018,30/11/2019,10/10/2018,"A1010 FS","A1010","00CR50 FS,A3300 FS,00CR20 FS,00CR70 FS,00CR100 FS,00CR90 FS,00CR10 FS,00CR30 FS,00CR80 FS,00CR60 FS,00CR40 FS","00CR50,A3300,00CR20,00CR70,00CR100,00CR90,00CR10,00CR30,00CR80,00CR60,00CR40",226,203,226,203,52,47,52,47,83,,"CCGT D1_Integrated Programme Schedule;M&E;Procurement;CLP Deliverables",1,11,0.0000005686,0.0067141404,0.0002034588,0,1.0,0.0000812387,0.0068493151,0.0338461538,0.0008583333,0.017232376,0.0006435006,0.0,1.0,0.0
1.3.2.1-82,SI1MAJ4-44,"Removal System (MAJ) on-site",7112,"CCGTD1_IPS",TT_FinMile,"58319",-,-,-,100,TK_Complete,02/04/2018,23/03/2018,02/04/2018,23/03/2018,"A1010 FS","A1010","10MAJ10 FS","10MAJ10",139,175,139,175,32,40,32,40,24,,"CCGT D1_Integrated Programme Schedule;M&E;Procurement;CLP Deliverables",1,1,0.0000000138,0.0052899288,0.0002034588,0,1.0,0.0000812387,0.0068493151,0.0030769231,0.0000208333,0.0135770235,0.0006435006,0.0,1.0,0.0
1.3.2.1-83,SI1LD-4-40,"Condensate Polishing Plant (LD) on-site",7112,"CCGTD1_IPS",TT_FinMile,"58319",-,-,-,100,TK_Complete,28/03/2020,30/04/2018,28/03/2020,30/04/2018,"A1010 FS","A1010","","",243,180,243,180,56,42,56,42,89,,"CCGT D1_Integrated Programme Schedule;M&E;Procurement;CLP Deliverables",1,0,0.0,0.0,0.0002034588,0,1.0,0.0000812387,0.0068493151,0.0,0.0,0.0,0.0006435006,0.0,1.0,0.0
1.3.2.1-84,SI1HA-4C25,"HRSG Modules on-site",7112,"CCGTD1_IPS",TT_FinMile,"58319",-,-,-,100,TK_Complete,26/04/2018,30/03/2018,26/04/2018,30/03/2018,"A1010 FS","A1010","HRS10.1010 FS,HRS10.1020 FS,HRS10.1060 FS","HRS10.1010,HRS10.1020,HRS10.1060",143,176,143,176,33,41,33,41,26,,"CCGT D1_Integrated Programme Schedule;M&E;Procurement;CLP Deliverables",1,3,0.000000107,0.0160732452,0.0002034588,0,1.0,0.0000812387,0.0068493151,0.0092307692,0.0001614583,0.0412532637,0.0006435006,0.0,1.0,0.0
1.3.2.1-85,SI1MB-4E27,"GT Interconnection Piping (MB) on-site",7112,"CCGTD1_IPS",TT_FinMile,"58319",-,-,-,100,TK_Complete,02/04/2018,24/03/2018,02/04/2018,24/03/2018,"A1010 FS","A1010","10MBU10 FS,10MBU30 FS,10MBX2x05 FS,10MBV1090 FS,10MBA4x30 FS,10MBU20 FS,10MBX2x20 FS,10MBP20 FS,10MBX2x30 FS,10MBX20 FS,10MBP30 FS,00MBU20 FS,00MBU10 FS,10MBA5x30 FS,10MBN20 FS,10MBV1030 FS,10MBA5x20 FS,10MBA4x10 FS,10MBX30 FS,10MBN30 FS,10MBA18-130 FS,10MBA4x20 FS,10MBH10 FS,10MBV1020 FS","10MBU10,10MBU30,10MBX2x05,10MBV1090,10MBA4x30,10MBU20,10MBX2x20,10MBP20,10MBX2x30,10MBX20,10MBP30,00MBU20,00MBU10,10MBA5x30,10MBN20,10MBV1030,10MBA5x20,10MBA4x10,10MBX30,10MBN30,10MBA18-130,10MBA4x20,10MBH10,10MBV1020",139,175,139,175,32,40,32,40,24,,"CCGT D1_Integrated Programme Schedule;M&E;Procurement;CLP Deliverables",1,24,0.0000011869,0.0376398779,0.0002034588,0,1.0,0.0000812387,0.0068493151,0.0738461538,0.0017916667,0.0966057441,0.0006435006,0.0,1.0,0.0
1.3.2.1-86,SI1SMQ4A45,"Crane SMQ for UQA on-site",7112,"CCGTD1_IPS",TT_FinMile,"58319",-,-,-,100,TK_Complete,30/11/2019,18/05/2019,30/11/2019,18/05/2019,"A1010 FS","A1010","00PAA10 FS","00PAA10",226,235,226,235,52,54,52,54,83,,"CCGT D1_Integrated Programme Schedule;M&E;Procurement;CLP Deliverables",1,1,0.0,0.0054933876,0.0002034588,0,1.0,0.0000812387,0.0068493151,0.0030769231,0.0,0.0140992167,0.0006435006,0.0,1.0,0.0
1.3.2.1-87,SI-BZK4-25,"MV/LV Cables (BZK) (1ST SET 30%) on-site",7112,"CCGTD1_IPS",TT_FinMile,"58319",-,-,-,100,TK_Complete,30/11/2019,20/02/2019,30/11/2019,20/02/2019,"A1010 FS","A1010","10PAB-01-50 FS,10MKF50 FS,10SGJ-02-30 FS,00PUS100 FS,10MKW50 FS,10MBA18-150 FS,00SCA50 FS,00GHD-140 FS,10MBN50 FS,00BAW-02-10 FS,10MBV1050 FS,GKB40 FS,10MAL50 FS,CP-BZK7C25 FS,00SGA-01-60 FS,10MAW60 FS,10MBU50 FS,00PUN40 FS,10LDK-50 FS,10BT40 FS,CP-BZK7H25 FS,CP1BZK7J25 FS,10PAB-02-50 FS,CP1BZK7A25 FS,10MBX2x50 FS,10QCC50 FS,CP1BZK7D25 FS,10MAV50 FS,10GHC40 FS,10SFC-40 FS,10SEE-40 FS,10HAD50-50 FS,00EG-02-40 FS,10EK40 FS,00BHV40 FS,CP-BZK7I25 FS,10MBA4x50 FS,10BF40 FS,00LAB50 FS,10MKQ50 FS,00BAW-01-10 FS,10QU50 FS,10MBH50 FS,10HAD80-50 FS,10BH40 FS,CP-BZK7A25 FS,10MKG50 FS,00MBH50 FS,10MBX50 FS,CP-BZK7B2 FS,CP-BZK7E25 FS,10BBE40 FS,CP1BZK7B25 FS,10AC40 FS,CP-BZK7F25 FS,10MAN1060 FS,10QCD50 FS,10MBA5x50 FS,10MAJ50 FS,10PAH50 FS,00STG50 FS,CP-BZK7G25 FS,10MBP50 FS,10PCB50 FS,00EG-01-50 FS,10PGB1050 FS,SC1230 FS","10PAB-01-50,10MKF50,10SGJ-02-30,00PUS100,10MKW50,10MBA18-150,00SCA50,00GHD-140,10MBN50,00BAW-02-10,10MBV1050,GKB40,10MAL50,CP-BZK7C25,00SGA-01-60,10MAW60,10MBU50,00PUN40,10LDK-50,10BT40,CP-BZK7H25,CP1BZK7J25,10PAB-02-50,CP1BZK7A25,10MBX2x50,10QCC50,CP1BZK7D25,10MAV50,10GHC40,10SFC-40,10SEE-40,10HAD50-50,00EG-02-40,10EK40,00BHV40,CP-BZK7I25,10MBA4x50,10BF40,00LAB50,10MKQ50,00BAW-01-10,10QU50,10MBH50,10HAD80-50,10BH40,CP-BZK7A25,10MKG50,00MBH50,10MBX50,CP-BZK7B2,CP-BZK7E25,10BBE40,CP1BZK7B25,10AC40,CP-BZK7F25,10MAN1060,10QCD50,10MBA5x50,10MAJ50,10PAH50,00STG50,CP-BZK7G25,10MBP50,10PCB50,00EG-01-50,10PGB1050,SC1230",226,222,226,222,52,51,52,51,83,,"CCGT D1_Integrated Programme Schedule;M&E;Procurement;CLP Deliverables",1,67,0.0000038458,0.0779247202,0.0002034588,0,1.0,0.0000812387,0.0068493151,0.2061538462,0.0058053385,0.2,0.0006435006,0.0,1.0,0.0
1.3.2.1-88,SI1SCA4-40,"Compressed Air System (SCA) on-site",7112,"CCGTD1_IPS",TT_FinMile,"58319",-,-,-,100,TK_Complete,30/11/2019,02/01/2019,30/11/2019,02/01/2019,"A1010 FS","A1010","00SCA110 FS","00SCA110",226,215,226,215,52,50,52,50,83,,"CCGT D1_Integrated Programme Schedule;M&E;Procurement;CLP Deliverables",1,1,0.0,0.0034587996,0.0002034588,0,1.0,0.0000812387,0.0068493151,0.0030769231,0.0,0.0088772846,0.0006435006,0.0,1.0,0.0
1.3.2.1-89,SI1PAA4-25,"CW Bar Screen for (PAB) on-site",7112,"CCGTD1_IPS",TT_FinMile,"58319",-,-,-,100,TK_Complete,26/05/2018,29/05/2018,26/05/2018,29/05/2018,"A1010 FS","A1010","10PAB-01-10 FS","10PAB-01-10",147,184,147,184,34,43,34,43,28,,"CCGT D1_Integrated Programme Schedule;M&E;Procurement;CLP Deliverables",1,1,0.0000000138,0.0042726348,0.0002034588,0,1.0,0.0000812387,0.0068493151,0.0030769231,0.0000208333,0.0109660574,0.0006435006,0.0,1.0,0.0
1.3.2.1-90,SI-GM-4B40,"Sump Pump (GM/GKB/GHD/UGU) on-site",7112,"CCGTD1_IPS",TT_FinMile,"58319",-,-,-,100,TK_Complete,30/11/2019,01/04/2019,30/11/2019,01/04/2019,"A1010 FS","A1010","00GM-03-10 FS,00GM-01-210 FS,10GM-02-10 FS,10GM-01-10 FS","00GM-03-10,00GM-01-210,10GM-02-10,10GM-01-10",226,228,226,228,52,53,52,53,83,,"CCGT D1_Integrated Programme Schedule;M&E;Procurement;CLP Deliverables",1,4,0.0000000476,0.0099694812,0.0002034588,0,1.0,0.0000812387,0.0068493151,0.0123076923,0.0000718316,0.0255874674,0.0006435006,0.0,1.0,0.0
1.3.2.1-91,SI1BAC4-25,"Generator Circuit Breaker (BAC) on-site",7112,"CCGTD1_IPS",TT_FinMile,"58319",-,-,-,100,TK_Complete,16/03/2018,15/03/2018,16/03/2018,15/03/2018,"A1010 FS","A1010","10BAC10 FS,10CHA30 FS","10BAC10,10CHA30",137,173,137,173,32,40,32,40,22,,"CCGT D1_Integrated Programme Schedule;M&E;Procurement;CLP Deliverables",1,2,0.0000003519,0.0115971516,0.0002034588,0,1.0,0.0000812387,0.0068493151,0.0061538462,0.00053125,0.0297650131,0.0006435006,0.0,1.0,0.0
1.3.2.1-92,SI-C--4B40,"BOP I&C Field Devices and Erection Material on-site",7112,"CCGTD1_IPS",TT_FinMile,"58319",-,-,-,100,TK_Complete,30/11/2019,10/05/2019,30/11/2019,10/05/2019,"A1010 FS","A1010","10QCD50 FS,00LAB50 FS,10QCC50 FS,00EG-01-50 FS,00EG-02-40 FS,10PGB1050 FS,10PAB-02-50 FS,10EK40 FS,10GHC40 FS,00SCA50 FS,00PUN40 FS,10PAB-01-50 FS,00GHD-140 FS,10QU50 FS,00STG50 FS,10PCB50 FS,GKB40 FS,10PAH50 FS,00MBH50 FS,10LDK-50 FS","10QCD50,00LAB50,10QCC50,00EG-01-50,00EG-02-40,10PGB1050,10PAB-02-50,10EK40,10GHC40,00SCA50,00PUN40,10PAB-01-50,00GHD-140,10QU50,00STG50,10PCB50,GKB40,10PAH50,00MBH50,10LDK-50",226,234,226,234,52,54,52,54,83,,"CCGT D1_Integrated Programme Schedule;M&E;Procurement;CLP Deliverables",1,20,0.000000524,0.0201424212,0.0002034588,0,1.0,0.0000812387,0.0068493151,0.0615384615,0.0007910156,0.0516971279,0.0006435006,0.0,1.0,0.0
1.3.2.1-93,SI-CP-4-40,"BOP I&C Field Cabinets on-site",7112,"CCGTD1_IPS",TT_FinMile,"58319",-,-,-,100,TK_Complete,30/11/2019,10/10/2018,30/11/2019,10/10/2018,"A1010 FS","A1010","10CP-GT10 FS,00LAB50 FS,10LDK-50 FS,00CR80 FS,10QU50 FS,10PAB-01-50 FS,10QCC50 FS,10GHC40 FS,10CP-HR10 FS,00CR30 FS,00CR40 FS,00PUN40 FS,10MKQ50 FS,00EG-02-40 FS,10PCB50 FS,00CR90 FS,10PAB-02-50 FS,10CP-AA10 FS,00EG-01-50 FS,00CR60 FS,10CP-WS10 FS,10EK40 FS,10PGB1050 FS,10QCD50 FS,00STG50 FS,00GHD-140 FS,10PAH50 FS,00CR50 FS,00MBH50 FS,ECS19.1420 FS,00CR70 FS,GKB40 FS,00CR20 FS,00SCA50 FS","10CP-GT10,00LAB50,10LDK-50,00CR80,10QU50,10PAB-01-50,10QCC50,10GHC40,10CP-HR10,00CR30,00CR40,00PUN40,10MKQ50,00EG-02-40,10PCB50,00CR90,10PAB-02-50,10CP-AA10,00EG-01-50,00CR60,10CP-WS10,10EK40,10PGB1050,10QCD50,00STG50,00GHD-140,10PAH50,00CR50,00MBH50,ECS19.1420,00CR70,GKB40,00CR20,00SCA50",226,203,226,203,52,47,52,47,83,,"CCGT D1_Integrated Programme Schedule;M&E;Procurement;CLP Deliverables",1,34,0.0000010157,0.0347914547,0.0002034588,0,1.0,0.0000812387,0.0068493151,0.1046153846,0.0015332031,0.0892950392,0.0006435006,0.0,1.0,0.0
1.3.2.1-94,SI-C-4C40,"BOP I&C Cables on-site",7112,"CCGTD1_IPS",TT_FinMile,"58319",-,-,-,100,TK_Complete,30/11/2019,24/04/2019,30/11/2019,24/04/2019,"A1010 FS","A1010","00STG50 FS,10PAB-02-50 FS,ECS20.1050 FS,10PGB1050 FS,10PCB50 FS,00EG-02-40 FS,00PUS100 FS,00GHD-140 FS,ECS20.1060 FS,10CP-ST-40 FS,10CP-AA40 FS,00PUN40 FS,10GHC40 FS,10QU50 FS,10PAB-01-50 FS,10CP-WS40 FS,10CP-HR40 FS,00SCA50 FS,10MKQ50 FS,00EG-01-50 FS,GKB40 FS,10PAH50 FS,10EK40 FS,10QCC50 FS,10LDK-50 FS,10QCD50 FS,10CP-GT40 FS","00STG50,10PAB-02-50,ECS20.1050,10PGB1050,10PCB50,00EG-02-40,00PUS100,00GHD-140,ECS20.1060,10CP-ST-40,10CP-AA40,00PUN40,10GHC40,10QU50,10PAB-01-50,10CP-WS40,10CP-HR40,00SCA50,10MKQ50,00EG-01-50,GKB40,10PAH50,10EK40,10QCC50,10LDK-50,10QCD50,10CP-GT40",226,231,226,231,52,54,52,54,83,,"CCGT D1_Integrated Programme Schedule;M&E;Procurement;CLP Deliverables",1,27,0.0000022427,0.0295015259,0.0002034588,0,1.0,0.0000812387,0.0068493151,0.0830769231,0.0033854167,0.0757180157,0.0006435006,0.0,1.0,0.0
1.3.2.1-95,SI0GN-4B44,"Process Drains Treatment (GN) on-site",7112,"CCGTD1_IPS",TT_FinMile,"58319",-,-,-,100,TK_Complete,30/11/2019,01/04/2019,30/11/2019,01/04/2019,"A1010 FS","A1010","10GM-01-10 FS,00GM-03-10 FS,10GM-02-10 FS,00GM-01-210 FS,00GM-01-100 FS,00GM-01-190 FS","10GM-01-10,00GM-03-10,10GM-02-10,00GM-01-210,00GM-01-100,00GM-01-190",226,228,226,228,52,53,52,53,83,,"CCGT D1_Integrated Programme Schedule;M&E;Procurement;CLP Deliverables",1,6,0.0000003029,0.011190234,0.0002034588,0,1.0,0.0000812387,0.0068493151,0.0184615385,0.0004572483,0.0287206266,0.0006435006,0.0,1.0,0.0
1.3.2.1-96,SI1UHW3B25,"Steel Structure (UHW) on-site",7112,"CCGTD1_IPS",TT_FinMile,"58319",-,-,-,100,TK_Complete,30/11/2019,05/10/2019,30/11/2019,05/10/2019,"A1010 FS","A1010","10LBA10-80 FS","10LBA10-80",226,255,226,255,52,59,52,59,83,,"CCGT D1_Integrated Programme Schedule;M&E;Procurement;CLP Deliverables",1,1,0.0000000414,0.0026449644,0.0002034588,0,1.0,0.0000812387,0.0068493151,0.0030769231,0.0000625,0.0067885117,0.0006435006,0.0,1.0,0.0
1.3.2.1-97,SI1CHA4-10,"Protection., Synchronising., Metering (CHA) on-site",7112,"CCGTD1_IPS",TT_FinMile,"58319",-,-,-,100,TK_Complete,30/11/2019,30/04/2019,30/11/2019,30/04/2019,"A1010 FS","A1010","10BAC10 FS,10CHA30 FS,10MKA1120 FS","10BAC10,10CHA30,10MKA1120",226,232,226,232,52,54,52,54,83,,"CCGT D1_Integrated Programme Schedule;M&E;Procurement;CLP Deliverables",1,3,0.0000005175,0.0124109868,0.0002034588,0,1.0,0.0000812387,0.0068493151,0.0092307692,0.00078125,0.0318537859,0.0006435006,0.0,1.0,0.0
1.3.2.1-98,SI---P4I40,"BOP Valves on-site",7112,"CCGTD1_IPS",TT_FinMile,"58319",-,-,-,100,TK_Complete,23/04/2018,23/02/2018,23/04/2018,23/02/2018,"A1010 FS","A1010","10LBA80-20 FS,00PUN20 FS,10LDK-20 FS,10GHC20 FS,10LCA-02-20 FS,10LCA30 FS,00EG-02-20 FS,00LBG20 FS,10EKT20-20 FS,10LAB20 FS,00LAB20 FS,00SCA20 FS,00GM-03-20 FS,00GHD-120 FS,10LBA10-20 FS,10PAB-02-20 FS,00GHC-02-20 FS,10PCB20 FS,10GM-02-30 FS,10PAB-01-20 FS,00MKG20 FS,10PAH20 FS,10LBG20 FS,00SCA110 FS,10GM-02-110 FS,00MBH20 FS,10LAC20 FS,GKB20 FS,00GKB-02-20 FS,00EG-01-20 FS,00EK20 FS","10LBA80-20,00PUN20,10LDK-20,10GHC20,10LCA-02-20,10LCA30,00EG-02-20,00LBG20,10EKT20-20,10LAB20,00LAB20,00SCA20,00GM-03-20,00GHD-120,10LBA10-20,10PAB-02-20,00GHC-02-20,10PCB20,10GM-02-30,10PAB-01-20,00MKG20,10PAH20,10LBG20,00SCA110,10GM-02-110,00MBH20,10LAC20,GKB20,00GKB-02-20,00EG-01-20,00EK20",142,171,142,171,33,39,33,39,24,,"CCGT D1_Integrated Programme Schedule;M&E;Procurement;CLP Deliverables",1,31,0.0000018003,0.0638860631,0.0002034588,0,1.0,0.0000812387,0.0068493151,0.0953846154,0.0027175347,0.1639686684,0.0006435006,0.0,1.0,0.0
1.3.2.1-99,SI1HA-4D25,"HRSG Drums on-site",7112,"CCGTD1_IPS",TT_FinMile,"58319",-,-,-,100,TK_Complete,26/04/2018,27/04/2018,26/04/2018,27/04/2018,"A1010 FS","A1010","HRS10.1050 FS","HRS10.1050",143,180,143,180,33,42,33,42,26,,"CCGT D1_Integrated Programme Schedule;M&E;Procurement;CLP Deliverables",1,1,0.0000000414,0.012207528,0.0002034588,0,1.0,0.0000812387,0.0068493151,0.0030769231,0.0000625,0.0313315927,0.0006435006,0.0,1.0,0.0
1.3.2.1-100,SI1QC-4-40,"Dosing Container (QC) on-site",7112,"CCGTD1_IPS",TT_FinMile,"58319",-,-,-,100,TK_Complete,30/11/2019,26/02/2019,30/11/2019,26/02/2019,"A1010 FS","A1010","10QCC20 FS,10QCD20 FS","10QCC20,10QCD20",226,223,226,223,52,52,52,52,83,,"CCGT D1_Integrated Programme Schedule;M&E;Procurement;CLP Deliverables",1,2,0.0,0.004069176,0.0002034588,0,1.0,0.0000812387,0.0068493151,0.0061538462,0.0,0.0104438642,0.0006435006,0.0,1.0,0.0
1.3.2.1-101,SI1LBH4D25,"Clean Drain Flush Tank (LBH) on-site",7112,"CCGTD1_IPS",TT_FinMile,"58319",-,-,-,100,TK_Complete,28/03/2020,15/06/2018,28/03/2020,15/06/2018,"A1010 FS","A1010","","",243,187,243,187,56,43,56,43,89,,"CCGT D1_Integrated Programme Schedule;M&E;Procurement;CLP Deliverables",1,0,0.0,0.0,0.0002034588,0,1.0,0.0000812387,0.0068493151,0.0,0.0,0.0,0.0006435006,0.0,1.0,0.0
1.3.2.1-102,SI1LDK4B40,"Condensate Polishing Pump (LDK) on-site",7112,"CCGTD1_IPS",TT_FinMile,"58319",-,-,-,100,TK_Complete,26/04/2018,30/04/2018,26/04/2018,30/04/2018,"A1010 FS","A1010","10LDK-20 FS","10LDK-20",143,180,143,180,33,42,33,42,26,,"CCGT D1_Integrated Programme Schedule;M&E;Procurement;CLP Deliverables",1,1,0.0000000155,0.0038657172,0.0002034588,0,1.0,0.0000812387,0.0068493151,0.0030769231,0.0000234375,0.009921671,0.0006435006,0.0,1.0,0.0
1.3.2.1-103,SI1HAD4E25,"HRSG Piping Material on-site",7112,"CCGTD1_IPS",TT_FinMile,"58319",-,-,-,100,TK_Complete,06/11/2018,01/11/2018,06/11/2018,01/11/2018,"A1010 FS","A1010","10HAA10 FS,HRS11.1170 FS,10HAD10-20 FS,10HAA20 FS,10HAD50-30 FS,10HAD10-30 FS,10HAD80-30 FS,10HAD50-20 FS","10HAA10,HRS11.1170,10HAD10-20,10HAA20,10HAD50-30,10HAD10-30,10HAD80-30,10HAD50-20",170,206,170,206,39,48,39,48,38,,"CCGT D1_Integrated Programme Schedule;M&E;Procurement;CLP Deliverables",1,8,0.0000007401,0.0144455748,0.0002034588,0,1.0,0.0000812387,0.0068493151,0.0246153846,0.0011171875,0.037075718,0.0006435006,0.0,1.0,0.0
1.3.2.1-104,SI1QU-4-40,"Sampling Container (QU) on-site",7112,"CCGTD1_IPS",TT_FinMile,"58319",-,-,-,100,TK_Complete,30/11/2019,26/02/2019,30/11/2019,26/02/2019,"A1010 FS","A1010","10QCD20 FS,10QCC20 FS","10QCD20,10QCC20",226,223,226,223,52,52,52,52,83,,"CCGT D1_Integrated Programme Schedule;M&E;Procurement;CLP Deliverables",1,2,0.0,0.004069176,0.0002034588,0,1.0,0.0000812387,0.0068493151,0.0061538462,0.0,0.0104438642,0.0006435006,0.0,1.0,0.0
1.3.2.1-105,SI1PXB4-40,"PXB00Y Module on-site",7112,"CCGTD1_IPS",TT_FinMile,"58319",-,-,-,100,TK_Complete,30/11/2019,04/09/2019,30/11/2019,04/09/2019,"A1010 FS","A1010","10PCB10 FS","10PCB10",226,250,226,250,52,58,52,58,83,,"CCGT D1_Integrated Programme Schedule;M&E;Procurement;CLP Deliverables",1,1,0.0,0.004069176,0.0002034588,0,1.0,0.0000812387,0.0068493151,0.0030769231,0.0,0.0104438642,0.0006435006,0.0,1.0,0.0
1.3.2.1-106,SI1HSJ4-25,"SCR Unit on-site",7112,"CCGTD1_IPS",TT_FinMile,"58319",-,-,-,100,TK_Complete,30/11/2019,04/11/2019,30/11/2019,04/11/2019,"A1010 FS","A1010","10HSJ100 FS","10HSJ100",226,259,226,259,52,60,52,60,83,,"CCGT D1_Integrated Programme Schedule;M&E;Procurement;CLP Deliverables",1,1,0.0000001035,0.0026449644,0.0002034588,0,1.0,0.0000812387,0.0068493151,0.0030769231,0.00015625,0.0067885117,0.0006435006,0.0,1.0,0.0
1.3.2.1-107,SI1CJF4-25,"HRSG Electrical & I&C Equipment on-site",7112,"CCGTD1_IPS",TT_FinMile,"58319",-,-,-,100,TK_Complete,30/11/2019,14/01/2019,30/11/2019,14/01/2019,"A1010 FS","A1010","ECS20.1050 FS,ECS20.1110 FS,10HAD80-50 FS,ECS20.1070 FS,ECS20.1080 FS,10HAD50-50 FS,ECS20.1060 FS","ECS20.1050,ECS20.1110,10HAD80-50,ECS20.1070,ECS20.1080,10HAD50-50,ECS20.1060",226,217,226,217,52,50,52,50,83,,"CCGT D1_Integrated Programme Schedule;M&E;Procurement;CLP Deliverables",1,7,0.0000001867,0.0042726348,0.0002034588,0,1.0,0.0000812387,0.0068493151,0.0215384615,0.0002817708,0.0109660574,0.0006435006,0.0,1.0,0.0
1.3.2.1-108,SI1LAC4-40,"LAC10Y Module on-site",7112,"CCGTD1_IPS",TT_FinMile,"58319",-,-,-,100,TK_Complete,30/11/2019,15/02/2019,30/11/2019,15/02/2019,"A1010 FS","A1010","10LAB10 FS,10LAC10 FS","10LAB10,10LAC10",226,222,226,222,52,51,52,51,83,,"CCGT D1_Integrated Programme Schedule;M&E;Procurement;CLP Deliverables",1,2,0.0000000276,0.0097660224,0.0002034588,0,1.0,0.0000812387,0.0068493151,0.0061538462,0.0000416667,0.0250652742,0.0006435006,0.0,1.0,0.0
1.3.2.1-109,SI1LCA4-40,"LCA50Y Module on-site",7112,"CCGTD1_IPS",TT_FinMile,"58319",-,-,-,100,TK_Complete,28/03/2020,27/02/2019,28/03/2020,27/02/2019,"A1010 FS","A1010","","",243,223,243,223,56,52,56,52,89,,"CCGT D1_Integrated Programme Schedule;M&E;Procurement;CLP Deliverables",1,0,0.0,0.0,0.0002034588,0,1.0,0.0000812387,0.0068493151,0.0,0.0,0.0,0.0006435006,0.0,1.0,0.0
1.3.2.1-110,SI0ACA4-25,"HV Switchgear (GIL) on-site",7112,"CCGTD1_IPS",TT_FinMile,"58319",-,-,-,100,TK_Complete,30/11/2019,10/04/2019,30/11/2019,10/04/2019,"A1010 FS","A1010","10AC10 FS","10AC10",226,229,226,229,52,53,52,53,83,,"CCGT D1_Integrated Programme Schedule;M&E;Procurement;CLP Deliverables",1,1,0.0000000414,0.012207528,0.0002034588,0,1.0,0.0000812387,0.0068493151,0.0030769231,0.0000625,0.0313315927,0.0006435006,0.0,1.0,0.0
1.3.2.1-111,SI-CFE4-40,"CEMS on-site",7112,"CCGTD1_IPS",TT_FinMile,"58319",-,-,-,100,TK_Complete,30/11/2019,20/05/2019,30/11/2019,20/05/2019,"A1010 FS","A1010","10CFE10 FS","10CFE10",226,235,226,235,52,54,52,54,83,,"CCGT D1_Integrated Programme Schedule;M&E;Procurement;CLP Deliverables",1,1,0.0000000621,0.004069176,0.0002034588,0,1.0,0.0000812387,0.0068493151,0.0030769231,0.00009375,0.0104438642,0.0006435006,0.0,1.0,0.0
1.3.2.1-112,SI-ZTB4A25,"Steam Blow pipework (ZTB) on-site",7112,"CCGTD1_IPS",TT_FinMile,"58319",-,-,-,100,TK_Complete,28/03/2020,15/06/2018,28/03/2020,15/06/2018,"A1010 FS","A1010","","",243,187,243,187,56,43,56,43,89,,"CCGT D1_Integrated Programme Schedule;M&E;Procurement;CLP Deliverables",1,0,0.0,0.0,0.0002034588,0,1.0,0.0000812387,0.0068493151,0.0,0.0,0.0,0.0006435006,0.0,1.0,0.0
1.3.2.1-113,SI-BZK4-58,"MV / LV Cables (BZK) (2ND SET 80%) on-site",7112,"CCGTD1_IPS",TT_FinMile,"58319",-,-,-,100,TK_Complete,30/11/2019,11/03/2019,30/11/2019,11/03/2019,"A1010 FS","A1010","CP-BZK7A25 FS,00STG50 FS,00SGA-01-60 FS,10SGJ-02-30 FS,10HAD50-50 FS,10HAD80-50 FS,00GHD-140 FS,00MBH50 FS,10MKG50 FS,00SCA50 FS,10SFC-40 FS,10MAJ50 FS,10BHT-40 FS,00PUS100 FS,10SEE-40 FS,10MKF50 FS,10LDK-50 FS,10PAB-02-50 FS,00EG-02-40 FS,10MBN50 FS,10EK40 FS,10MBA18-150 FS,10PAB-01-50 FS,10PCB50 FS,10MAN1060 FS,10MBV1050 FS,GKB40 FS,10MBX2x50 FS,10MKW50 FS,00BAW-02-10 FS,00BAW-02-20 FS,10QCC50 FS,10MKQ50 FS,10MBX50 FS,10MAW60 FS,10MBU50 FS,10QCD50 FS,10MBA5x50 FS,00PUN40 FS,10MBP50 FS,00EG-01-50 FS,10QU50 FS,10MAV50 FS,10MBH50 FS,10MBA4x50 FS,10MAL50 FS,00LAB50 FS,10PGB1050 FS,10GHC40 FS,10PAH50 FS,ECS19.1420 FS,SC1230 FS","CP-BZK7A25,00STG50,00SGA-01-60,10SGJ-02-30,10HAD50-50,10HAD80-50,00GHD-140,00MBH50,10MKG50,00SCA50,10SFC-40,10MAJ50,10BHT-40,00PUS100,10SEE-40,10MKF50,10LDK-50,10PAB-02-50,00EG-02-40,10MBN50,10EK40,10MBA18-150,10PAB-01-50,10PCB50,10MAN1060,10MBV1050,GKB40,10MBX2x50,10MKW50,00BAW-02-10,00BAW-02-20,10QCC50,10MKQ50,10MBX50,10MAW60,10MBU50,10QCD50,10MBA5x50,00PUN40,10MBP50,00EG-01-50,10QU50,10MAV50,10MBH50,10MBA4x50,10MAL50,00LAB50,10PGB1050,10GHC40,10PAH50,ECS19.1420,SC1230",226,225,226,225,52,52,52,52,83,,"CCGT D1_Integrated Programme Schedule;M&E;Procurement;CLP Deliverables",1,52,0.0000027503,0.0561546287,0.0002034588,0,1.0,0.0000812387,0.0068493151,0.16,0.0041516927,0.1441253264,0.0006435006,0.0,1.0,0.0
1.3.2.1-114,SI1UMY4-42,"UMY00Y Module on-site",7112,"CCGTD1_IPS",TT_FinMile,"58319",-,-,-,100,TK_Complete,29/09/2018,06/09/2018,29/09/2018,06/09/2018,"A1010 FS","A1010","A2380 FS","A2380",165,198,165,198,38,46,38,46,37,,"CCGT D1_Integrated Programme Schedule;M&E;Procurement;CLP Deliverables",1,1,0.0000000138,0.0368260427,0.0002034588,0,1.0,0.0000812387,0.0068493151,0.0030769231,0.0000208333,0.0945169713,0.0006435006,0.0,1.0,0.0
1.3.2.1-115,SI1LCB4B40,"Condensate Extraction Pump (LCB) on-site (arrived on June 1)",7112,"CCGTD1_IPS",TT_FinMile,"58319",-,-,-,100,TK_Complete,30/11/2019,10/01/2019,30/11/2019,10/01/2019,"A1010 FS","A1010","10LCA10 FS,10LCA-02-10 FS","10LCA10,10LCA-02-10",226,216,226,216,52,50,52,50,83,,"CCGT D1_Integrated Programme Schedule;M&E;Procurement;CLP Deliverables",1,2,0.0000000207,0.0063072228,0.0002034588,0,1.0,0.0000812387,0.0068493151,0.0061538462,0.00003125,0.0161879896,0.0006435006,0.0,1.0,0.0
1.3.2.1-116,SI1PAC4E40,"Embedded Parts Pump (PAC) on-site",7112,"CCGTD1_IPS",TT_FinMile,"58319",-,-,-,100,TK_Complete,30/11/2019,06/07/2019,30/11/2019,06/07/2019,"A1010 FS","A1010","10PAB-01-10 FS","10PAB-01-10",226,242,226,242,52,56,52,56,83,,"CCGT D1_Integrated Programme Schedule;M&E;Procurement;CLP Deliverables",1,1,0.0000000138,0.0042726348,0.0002034588,0,1.0,0.0000812387,0.0068493151,0.0030769231,0.0000208333,0.0109660574,0.0006435006,0.0,1.0,0.0
1.3.2.1-117,SI1PAC4B40,"Circ CW Pump (PAC) on-site",7112,"CCGTD1_IPS",TT_FinMile,"58319",-,-,-,100,TK_Complete,30/11/2019,06/07/2019,30/11/2019,06/07/2019,"A1010 FS","A1010","10PAB-01-10 FS","10PAB-01-10",226,242,226,242,52,56,52,56,83,,"CCGT D1_Integrated Programme Schedule;M&E;Procurement;CLP Deliverables",1,1,0.0000000138,0.0042726348,0.0002034588,0,1.0,0.0000812387,0.0068493151,0.0030769231,0.0000208333,0.0109660574,0.0006435006,0.0,1.0,0.0
1.3.2.1-118,SI1STG-4-44,"Laboratory Container on-site STG",7112,"CCGTD1_IPS",TT_FinMile,"58319",-,-,-,100,TK_Complete,30/11/2019,30/04/2019,30/11/2019,30/04/2019,"A1010 FS","A1010","00STG20 FS","00STG20",226,232,226,232,52,54,52,54,83,,"CCGT D1_Integrated Programme Schedule;M&E;Procurement;CLP Deliverables",1,1,0.0,0.0028484232,0.0002034588,0,1.0,0.0000812387,0.0068493151,0.0030769231,0.0,0.007310705,0.0006435006,0.0,1.0,0.0
1.3.2.1-119,SI1HB-4D25,"HRSG Steel Structure - Stack on-site",7112,"CCGTD1_IPS",TT_FinMile,"58319",-,-,-,100,TK_Complete,30/08/2018,29/08/2018,30/08/2018,29/08/2018,"A1010 FS","A1010","","",161,197,161,197,37,46,37,46,35,,"CCGT D1_Integrated Programme Schedule;M&E;Procurement;CLP Deliverables",1,0,0.0,0.0,0.0002034588,0,1.0,0.0000812387,0.0068493151,0.0,0.0,0.0,0.0006435006,0.0,1.0,0.0
1.3.2.1-120,SI-EK-4-40,"Fuel Gas Supply System (EK/EKC) on-site",7112,"CCGTD1_IPS",TT_FinMile,"58319",-,-,-,100,TK_Complete,28/05/2018,26/05/2018,28/05/2018,26/05/2018,"A1010 FS","A1010","10EK10 FS","10EK10",147,184,147,184,34,42,34,42,29,,"CCGT D1_Integrated Programme Schedule;M&E;Procurement;CLP Deliverables",1,1,0.0,0.0028484232,0.0002034588,0,1.0,0.0000812387,0.0068493151,0.0030769231,0.0,0.007310705,0.0006435006,0.0,1.0,0.0
1.3.2.1-121,SI-BZK4-52,"MV Cables (BZK) on-site",7112,"CCGTD1_IPS",TT_FinMile,"58319",-,-,-,100,TK_Complete,30/11/2019,20/02/2019,30/11/2019,20/02/2019,"A1010 FS","A1010","CP-BZK7C25 FS,CP-BZK7A25 FS,10BH40 FS,CP-BZK7B2 FS,CP1BZK7J25 FS,10BBT60 FS,10BBE40 FS,10BT40 FS,10AC40 FS,CP1BZK7B25 FS,CP-BZK7H25 FS,CP-BZK7E25 FS,CP-BZK7F25 FS,CP1BZK7A25 FS,CP-BZK7I25 FS,CP-BZK7G25 FS,00BHV40 FS,10BF40 FS","CP-BZK7C25,CP-BZK7A25,10BH40,CP-BZK7B2,CP1BZK7J25,10BBT60,10BBE40,10BT40,10AC40,CP1BZK7B25,CP-BZK7H25,CP-BZK7E25,CP-BZK7F25,CP1BZK7A25,CP-BZK7I25,CP-BZK7G25,00BHV40,10BF40",226,222,226,222,52,51,52,51,83,,"CCGT D1_Integrated Programme Schedule;M&E;Procurement;CLP Deliverables",1,18,0.000002753,0.0384537131,0.0002034588,0,1.0,0.0000812387,0.0068493151,0.0553846154,0.0041557292,0.098694517,0.0006435006,0.0,1.0,0.0
1.3.2.1-122,SI0EG-4-44,"Fuel Oil Forwarding System (EG) (incl. Pumps) on-site",7112,"CCGTD1_IPS",TT_FinMile,"58319",-,-,-,100,TK_Complete,30/11/2019,15/09/2018,30/11/2019,15/09/2018,"A1010 FS","A1010","00EG-01-10 FS,00EG-02-10 FS","00EG-01-10,00EG-02-10",226,200,226,200,52,46,52,46,83,,"CCGT D1_Integrated Programme Schedule;M&E;Procurement;CLP Deliverables",1,2,0.000000069,0.007121058,0.0002034588,0,1.0,0.0000812387,0.0068493151,0.0061538462,0.0001041667,0.0182767624,0.0006435006,0.0,1.0,0.0
1.3.2.1-123,SI-MBH4-58,"Hydrogen Supply Sytsem on site",7112,"CCGTD1_IPS",TT_FinMile,"58319",-,-,-,100,TK_Complete,30/11/2019,17/10/2018,30/11/2019,17/10/2018,"A1010 FS","A1010","10MKG10 FS","10MKG10",226,204,226,204,52,47,52,47,83,,"CCGT D1_Integrated Programme Schedule;M&E;Procurement;CLP Deliverables",1,1,0.0000000414,0.007121058,0.0002034588,0,1.0,0.0000812387,0.0068493151,0.0030769231,0.0000625,0.0182767624,0.0006435006,0.0,1.0,0.0
1.3.2.1-124,SI-MKG4-60,"CO2 Supply System on-site",7112,"CCGTD1_IPS",TT_FinMile,"58319",-,-,-,100,TK_Complete,30/11/2019,01/04/2019,30/11/2019,01/04/2019,"A1010 FS","A1010","00MKG20 FS,FSS22.1140 FS","00MKG20,FSS22.1140",226,228,226,228,52,53,52,53,83,,"CCGT D1_Integrated Programme Schedule;M&E;Procurement;CLP Deliverables",1,2,0.0000000311,0.0046795524,0.0002034588,0,1.0,0.0000812387,0.0068493151,0.0061538462,0.000046875,0.0120104439,0.0006435006,0.0,1.0,0.0
1.3.2.1-125,SI0PUN4-60,"Electrochlorination System on-site",7112,"CCGTD1_IPS",TT_FinMile,"58319",-,-,-,100,TK_Complete,28/03/2020,30/08/2018,28/03/2020,30/08/2018,"A1010 FS","A1010","","",243,197,243,197,56,46,56,46,89,,"CCGT D1_Integrated Programme Schedule;M&E;Procurement;CLP Deliverables",1,0,0.0,0.0,0.0002034588,0,1.0,0.0000812387,0.0068493151,0.0,0.0,0.0,0.0006435006,0.0,1.0,0.0
1.3.2.1-126,SI-PAS4-66,"Make-up Water Pumps (PAS) / NOX Control Water Pump on-site",7112,"CCGTD1_IPS",TT_FinMile,"58319",-,-,-,100,TK_Complete,30/11/2019,15/12/2018,30/11/2019,15/12/2018,"A1010 FS","A1010","00MBU10 FS","00MBU10",226,213,226,213,52,49,52,49,83,,"CCGT D1_Integrated Programme Schedule;M&E;Procurement;CLP Deliverables",1,1,0.0000000104,0.0046795524,0.0002034588,0,1.0,0.0000812387,0.0068493151,0.0030769231,0.000015625,0.0120104439,0.0006435006,0.0,1.0,0.0
1.3.2.1-127,SI-BZK4-60,"MV/LV Cables (BZK) (3RD SET 100%) on-site",7112,"CCGTD1_IPS",TT_FinMile,"58319",-,-,-,100,TK_Complete,30/11/2019,01/04/2019,30/11/2019,01/04/2019,"A1010 FS","A1010","00MKG20 FS,00MBH50 FS,CP-BZK7A25 FS","00MKG20,00MBH50,CP-BZK7A25",226,228,226,228,52,53,52,53,84,,"CCGT D1_Integrated Programme Schedule;M&E;Procurement;CLP Deliverables",1,3,0.000000029,0.0073245168,0.0002034588,0,1.0,0.0000812387,0.0068493151,0.0092307692,0.00004375,0.0187989556,0.0006435006,0.0,1.0,0.0
1.3.2.1-128,SI1CJT4-25,"SFC/SEE Cubicle (CJT) on-site",7112,"CCGTD1_IPS",TT_FinMile,"58319",-,-,-,100,TK_Complete,30/11/2019,27/03/2019,30/11/2019,27/03/2019,"A1010 FS","A1010","10MKB30 FS,10MKB200 FS","10MKB30,10MKB200",226,227,226,227,52,53,52,53,84,,"CCGT D1_Integrated Programme Schedule;M&E;Procurement;CLP Deliverables",1,2,0.0000001656,0.0067141404,0.0002034588,0,1.0,0.0000812387,0.0068493151,0.0061538462,0.00025,0.017232376,0.0006435006,0.0,1.0,0.0
1.3.2.1-129,SI-GHD4-62,"Water Pipework System on-site",7112,"CCGTD1_IPS",TT_FinMile,"58319",-,-,-,100,TK_Complete,30/11/2019,31/10/2018,30/11/2019,31/10/2018,"A1010 FS","A1010","GKB10 FS,00GKB-02-10 FS,00GKB-02-20 FS,10GHC10 FS,GKB20 FS,00GHD-110 FS,10PCB20 FS,00GHD-02-10 FS,10PAH20 FS,00GHC-02-20 FS","GKB10,00GKB-02-10,00GKB-02-20,10GHC10,GKB20,00GHD-110,10PCB20,00GHD-02-10,10PAH20,00GHC-02-20",226,206,226,206,52,48,52,48,84,,"CCGT D1_Integrated Programme Schedule;M&E;Procurement;CLP Deliverables",1,10,0.0000001044,0.018311292,0.0002034588,0,1.0,0.0000812387,0.0068493151,0.0307692308,0.0001576389,0.046997389,0.0006435006,0.0,1.0,0.0
1.3.2.1-130,SI-SCB4-64,"Compressed Air Interconnection system on-site",7112,"CCGTD1_IPS",TT_FinMile,"58319",-,-,-,100,TK_Complete,30/11/2019,02/01/2019,30/11/2019,02/01/2019,"A1010 FS","A1010","00SCA110 FS","00SCA110",226,215,226,215,52,50,52,50,84,,"CCGT D1_Integrated Programme Schedule;M&E;Procurement;CLP Deliverables",1,1,0.0,0.0034587996,0.0002034588,0,1.0,0.0000812387,0.0068493151,0.0030769231,0.0,0.0088772846,0.0006435006,0.0,1.0,0.0
1.3.2.1-131,SI1MPB4-25,"Noise Protection System (MPB20) on-site",7112,"CCGTD1_IPS",TT_FinMile,"58319",-,-,-,100,TK_Complete,30/04/2018,21/03/2018,30/04/2018,21/03/2018,"A1010 FS","A1010","10MBA1067 FS,FSS22.1060 FS","10MBA1067,FSS22.1060",143,174,143,174,33,40,33,40,26,,"CCGT D1_Integrated Programme Schedule;M&E;Procurement;CLP Deliverables",1,2,0.000000176,0.0063072228,0.0002034588,0,1.0,0.0000812387,0.0068493151,0.0061538462,0.000265625,0.0161879896,0.0006435006,0.0,1.0,0.0
1.3.2.1-132,SI-EK-4-44,"Fuel Gas Supply System EK (Add. Isolating Valves Only)",7112,"CCGTD1_IPS",TT_FinMile,"58319",-,-,-,100,TK_Complete,30/11/2019,10/06/2019,30/11/2019,10/06/2019,"A1010 FS","A1010","10EK10 FS","10EK10",226,238,226,238,52,55,52,55,84,,"CCGT D1_Integrated Programme Schedule;M&E;Procurement;CLP Deliverables",1,1,0.0,0.0028484232,0.0002034588,0,1.0,0.0000812387,0.0068493151,0.0030769231,0.0,0.007310705,0.0006435006,0.0,1.0,0.0
1.3.2.1-133,SI1HSJ4-42,"SCR Catalyst on-site",7112,"CCGTD1_IPS",TT_FinMile,"58319",-,-,-,100,TK_Complete,28/03/2020,20/01/2020,28/03/2020,20/01/2020,"A1010 FS","A1010","","",243,270,243,270,56,63,56,63,89,,"CCGT D1_Integrated Programme Schedule;M&E;Procurement;CLP Deliverables",1,0,0.0,0.0,0.0002034588,0,1.0,0.0000812387,0.0068493151,0.0,0.0,0.0,0.0006435006,0.0,1.0,0.0
1.3.2.1-134,ECS18.1130,"Delivery of LV Transformer BFT01 (BHT)",7112,"CCGTD1_IPS",TT_Task,"58319",-,-,-,100,TK_Complete,02/12/2019,27/03/2019,03/12/2019,27/03/2019,"A1010 FS","A1010","10BF10 FS,10SFC-10 FS,10SFC-20 FS","10BF10,10SFC-10,10SFC-20",226,227,226,227,52,53,52,53,85,,"CCGT D1_Integrated Programme Schedule;M&E;Procurement;CLP Deliverables",1,3,0.0000000414,0.0087487284,0.0002034588,1,1.0,0.0000812868,0.0068493151,0.0092307692,0.0000625,0.0224543081,0.0006435006,0.0022421525,1.0,0.0000196921
1.3.2.1-135,ECS18.1170,"Delivery of LV Transformer BFT02 (BHT)",7112,"CCGTD1_IPS",TT_Task,"58319",-,-,-,100,TK_Complete,02/12/2019,27/03/2019,03/12/2019,27/03/2019,"A1010 FS","A1010","10SEE-10 FS,10SEE-20 FS","10SEE-10,10SEE-20",226,227,226,227,52,53,52,53,85,,"CCGT D1_Integrated Programme Schedule;M&E;Procurement;CLP Deliverables",1,2,0.0000000221,0.006103764,0.0002034588,1,1.0,0.0000812868,0.0068493151,0.0061538462,0.0000333333,0.0156657963,0.0006435006,0.0022421525,1.0,0.0000196921
1.3.2.1-136,ECS18.1210,"Delivery of LV Transformer BFT03",7112,"CCGTD1_IPS",TT_Task,"58319",-,-,-,100,TK_Complete,02/12/2019,27/03/2019,03/12/2019,27/03/2019,"A1010 FS","A1010","10BBT10 FS","10BBT10",226,227,226,227,52,53,52,53,85,,"CCGT D1_Integrated Programme Schedule;M&E;Procurement;CLP Deliverables",1,1,0.0000000104,0.0083418108,0.0002034588,1,1.0,0.0000812868,0.0068493151,0.0030769231,0.000015625,0.0214099217,0.0006435006,0.0022421525,1.0,0.0000196921
1.3.2.1-137,ECS18.1330,"Delivery of LV Switchgear 10BFE/10BMA",7112,"CCGTD1_IPS",TT_Task,"58319",-,-,-,100,TK_Complete,02/12/2019,05/04/2019,09/12/2019,10/04/2019,"A1010 FS","A1010","10BH10 FS,00BHV10 FS","10BH10,00BHV10",226,229,227,229,52,53,53,53,85,,"CCGT D1_Integrated Programme Schedule;M&E;Procurement;CLP Deliverables",1,2,0.0000000621,0.0067141404,0.0002034588,7,1.0,0.0000815751,0.0068493151,0.0061538462,0.00009375,0.017232376,0.0006435006,0.0156950673,1.0,0.0001378448
1.3.2.1-138,ECS18.1370,"Delivery of PCC UBA81 & Cabinet 10UBA Building",7112,"CCGTD1_IPS",TT_Task,"58319",-,-,-,100,TK_Complete,30/03/2020,28/03/2020,06/04/2020,28/03/2020,"A1010 FS","A1010","","",243,280,244,280,56,65,57,65,90,,"CCGT D1_Integrated Programme Schedule;M&E;Procurement;CLP Deliverables",1,0,0.0,0.0,0.0002034588,7,1.0,0.0000815751,0.0068493151,0.0,0.0,0.0,0.0006435006,0.0156950673,1.0,0.0001378448
1.3.2.1-139,ECS21.1010,"Delivery of SEE/ SFC Transformer",7112,"CCGTD1_IPS",TT_Task,"58319",-,-,-,100,TK_Complete,26/04/2018,26/04/2018,03/05/2018,02/05/2018,"SI1MKC4-25 FS,A1010 FS","SI1MKC4-25,A1010","10SEE-10 FS,10SFC-10 FS","10SEE-10,10SFC-10",143,179,144,180,33,41,33,42,26,,"CCGT D1_Integrated Programme Schedule;M&E;Procurement;CLP Deliverables",2,2,0.0000015057,0.0073245168,0.0004069176,7,1.0,0.0001507321,0.0136986301,0.0061538462,0.0022729167,0.0187989556,0.0012870013,0.0156950673,1.0,0.028474802
1.3.2.1-140,SI-CYP4-25,"Security System  (CYP) on-site",7112,"CCGTD1_IPS",TT_FinMile,"58319",-,-,-,100,TK_Complete,30/11/2019,16/04/2019,30/11/2019,16/04/2019,"A1010 FS","A1010","CP-CYP7A25 FS,CP-CYP7A15 FS,10CY10 FS,00CY10 FS","CP-CYP7A25,CP-CYP7A15,10CY10,00CY10",226,230,226,230,52,53,52,53,84,,"CCGT D1_Integrated Programme Schedule;M&E;Procurement;CLP Deliverables",1,4,0.0000003243,0.0054933876,0.0002034588,0,1.0,0.0000812387,0.0068493151,0.0123076923,0.0004895833,0.0140992167,0.0006435006,0.0,1.0,0.0
1.3.2.2,58313,"SEL / KS Sub-Contracts",7112,"CCGTD1_IPS",WBS,"58312",,,,100,Complete,01/02/2018,06/11/2017,05/11/2018,05/12/2018,,,,,131,155,170,211,30,36,39,49,,,"CCGT D1_Integrated Programme Schedule;M&E;Procurement"
1.3.2.2.1,58318,"EC&I Subcontract",7112,"CCGTD1_IPS",WBS,"58313",,,,100,Complete,26/06/2018,16/04/2018,05/11/2018,05/12/2018,,,,,151,178,170,211,35,41,39,49,,,"CCGT D1_Integrated Programme Schedule;M&E;Procurement;SEL / KS Sub-Contracts"
1.3.2.2.1-1,SUB-EIC-100,"Prepare RFQ Documentation",7112,"CCGTD1_IPS",TT_Task,"58318",-,-,-,100,TK_Complete,26/06/2018,16/04/2018,17/07/2018,21/04/2018,"ENG2240 FS,ENG2280 FS,ENG1020 FS,ENG2370 FS,ENG2320 FF,ENG1010 FS,ENG2320 FS,ENG1600 FS,ENG2160 FS,ENG1000 FS,ENG2310 FS,ENG2250 FS,ENG2030 FS,ENG2270 FS,A1010 FS","ENG2240,ENG2280,ENG1020,ENG2370,ENG2320,ENG1010,ENG2320,ENG1600,ENG2160,ENG1000,ENG2310,ENG2250,ENG2030,ENG2270,A1010","SUB-EIC-110 FS","SUB-EIC-110",151,178,154,179,35,41,36,41,31,,"CCGT D1_Integrated Programme Schedule;M&E;Procurement;SEL / KS Sub-Contracts;EC&I Subcontract",14,1,0.000277903,0.0980671414,0.003051882,21,1.0,0.0008323829,0.095890411,0.0030769231,0.4195,0.2516971279,0.0096525097,0.0470852018,1.0,0.307779917
1.3.2.2.1-2,SUB-EIC-110,"Issue RFQ Documentation",7112,"CCGTD1_IPS",TT_FinMile,"58318",-,-,-,100,TK_Complete,17/07/2018,23/04/2018,17/07/2018,23/04/2018,"SUB-EIC-100 FS","SUB-EIC-100","SUB-EIC-120 FS","SUB-EIC-120",154,179,154,179,36,41,36,41,32,,"CCGT D1_Integrated Programme Schedule;M&E;Procurement;SEL / KS Sub-Contracts;EC&I Subcontract",1,1,0.0002971972,0.0978636826,0.0032553408,0,1.0,0.0000812387,0.0068493151,0.0030769231,0.448625,0.2511749347,0.0102960103,0.0,1.0,0.0
1.3.2.2.1-3,SUB-EIC-120,"RFQ Process",7112,"CCGTD1_IPS",TT_Task,"58318",-,-,-,100,TK_Complete,18/07/2018,23/04/2018,07/08/2018,26/05/2018,"SUB-EIC-110 FS","SUB-EIC-110","SUB-EIC-130 FS","SUB-EIC-130",155,179,157,184,36,41,36,42,32,,"CCGT D1_Integrated Programme Schedule;M&E;Procurement;SEL / KS Sub-Contracts;EC&I Subcontract",1,1,0.0003164087,0.0976602238,0.0034587996,20,0.0,0.0001503957,0.0068493151,0.0030769231,0.477625,0.2506527415,0.0109395109,0.0448430493,0.0,0.0283369572
1.3.2.2.1-4,SUB-EIC-130,"Bid Technical Evaluation/Review Process",7112,"CCGTD1_IPS",TT_Task,"58318",-,-,-,100,TK_Complete,08/08/2018,07/05/2018,21/08/2018,16/05/2018,"SUB-EIC-120 FS","SUB-EIC-120","SUB-EIC-140 FS","SUB-EIC-140",158,181,159,182,36,42,37,42,34,,"CCGT D1_Integrated Programme Schedule;M&E;Procurement;SEL / KS Sub-Contracts;EC&I Subcontract",1,1,0.0003355373,0.097456765,0.0036622584,13,1.0,0.000209244,0.0068493151,0.0030769231,0.5065,0.2501305483,0.0115830116,0.0291479821,1.0,0.0524499399
1.3.2.2.1-5,SUB-EIC-150,"Award Sub-Contract Package",7112,"CCGTD1_IPS",TT_FinMile,"58318",-,-,-,100,TK_Complete,30/08/2018,31/08/2018,30/08/2018,31/08/2018,"SUB-EIC-140 FS","SUB-EIC-140","SUB-EIC-160 FS,SUB-EIC-170 FS","SUB-EIC-160,SUB-EIC-170",161,198,161,198,37,46,37,46,35,,"CCGT D1_Integrated Programme Schedule;M&E;Procurement;SEL / KS Sub-Contracts;EC&I Subcontract",1,2,0.0003735461,0.0970498474,0.004069176,0,1.0,0.0000812387,0.0068493151,0.0061538462,0.563875,0.2490861619,0.0128700129,0.0,1.0,0.0
1.3.2.2.1-6,SUB-EIC-140,"Negotiations with Selected Sub-Contractor",7112,"CCGTD1_IPS",TT_Task,"58318",-,-,-,100,TK_Complete,22/08/2018,16/05/2018,04/09/2018,26/05/2018,"SUB-EIC-130 FS","SUB-EIC-130","SUB-EIC-150 FS","SUB-EIC-150",160,182,161,184,37,42,37,42,35,,"CCGT D1_Integrated Programme Schedule;M&E;Procurement;SEL / KS Sub-Contracts;EC&I Subcontract",1,1,0.0003545831,0.0972533062,0.0038657172,13,1.0,0.0002593786,0.0068493151,0.0030769231,0.53525,0.2496083551,0.0122265122,0.0291479821,1.0,0.0729924654
1.3.2.2.1-7,SUB-EIC-160,"Subcontractor Site Mobilization",7112,"CCGTD1_IPS",TT_Task,"58318",-,-,-,100,TK_Complete,02/10/2018,26/09/2018,05/11/2018,10/10/2018,"SUB-EIC-150 FS","SUB-EIC-150","SUB-EIC-180 SS","SUB-EIC-180",165,201,170,203,38,47,39,47,37,,"CCGT D1_Integrated Programme Schedule;M&E;Procurement;SEL / KS Sub-Contracts;EC&I Subcontract",1,1,0.0001957784,0.0966429298,0.0042726348,34,1.0,0.0001143562,0.0068493151,0.0030769231,0.29553125,0.2480417755,0.0135135135,0.0762331839,1.0,0.0135698105
1.3.2.2.1-8,SUB-EIC-170,"Subcontractor Submittal/Approval of Required Documentation (QA/QC, Weld Procedures, HSE, Schedules)",7112,"CCGTD1_IPS",TT_Task,"58318",-,-,-,100,TK_Complete,06/09/2018,05/09/2018,13/10/2018,05/12/2018,"SUB-EIC-150 FS","SUB-EIC-150","SUB-EIC-180 SS","SUB-EIC-180",162,198,167,211,37,46,39,49,36,,"CCGT D1_Integrated Programme Schedule;M&E;Procurement;SEL / KS Sub-Contracts;EC&I Subcontract",1,1,0.0001957784,0.0966429298,0.0042726348,37,0.0,0.0001172783,0.0068493151,0.0030769231,0.29553125,0.2480417755,0.0135135135,0.0829596413,0.0,0.0147671467
1.3.2.2.1-9,SUB-EIC-180,"EI&C Contractor Mobilized @ Site - Commencement of Work",7112,"CCGTD1_IPS",TT_Mile,"58318",-,-,-,100,TK_Complete,29/09/2018,29/09/2018,29/09/2018,29/09/2018,"SUB-EIC-170 SS,SUB-EIC-160 SS","SUB-EIC-170,SUB-EIC-160","CP-BZK7G25 FS,CP1BZK7J25 FS,00BHV10 FS,00BZL-03-10 FS,10BF10 FS,CP1BZP7F15 FS,00BZL-01-10 FS,10CP-HR10 FS,00CY10 FS,CP-BZP7B15 SS,00CR10 FS,10MKB30 FS,CP1BZK7B25 FS,CP1BZP7G15 FS,00BZL-02-10 FS,10MKB200 FS,00BAW-02-20 FS,10CY10 FS,00BAW-01-20 FS,A3320 FS,CP-BZK7H25 FS,CP-BZP7B15 FS,CP-BZK7F25 FS,CP1BZP7C15 FS,10CP-WS10 FS,CP1BZP7D15 FS,CP1BZP7A15 FS,CP-BZP7A15 FS,10SFC-10 FS,10BH10 FS,10BT10 FS,00XKA10 FS,CP-BZK7A25 FS,CP-BZK7B2 FS,10AC10 FS,00BAW-03-20 FS,10BBT10 FS,10CHA30 FS,10CP-AA10 FS,10CP-GT10 FS,CP-CYP7A15 FS,CP-BZP7A15 SS,CP-BZK7C25 FS,10BBE10 FS,CP1BZK7A25 FS,10BA10 FS,CP-BZK7E25 FS,10BAT10 FS,00CR100 FS,10BAC10 FS,10BHT-20 FS,10BZL-02-10 FS,10BZL-01-10 FS,10SEE-10 FS,CP1BZK7D25 FS,CP-BZK7I25 FS,10BZL-03-30 FS,10HSJ100 FS,SC1230 FS,SC1180 FS,SC1190 FS,SC1240 FS","CP-BZK7G25,CP1BZK7J25,00BHV10,00BZL-03-10,10BF10,CP1BZP7F15,00BZL-01-10,10CP-HR10,00CY10,CP-BZP7B15,00CR10,10MKB30,CP1BZK7B25,CP1BZP7G15,00BZL-02-10,10MKB200,00BAW-02-20,10CY10,00BAW-01-20,A3320,CP-BZK7H25,CP-BZP7B15,CP-BZK7F25,CP1BZP7C15,10CP-WS10,CP1BZP7D15,CP1BZP7A15,CP-BZP7A15,10SFC-10,10BH10,10BT10,00XKA10,CP-BZK7A25,CP-BZK7B2,10AC10,00BAW-03-20,10BBT10,10CHA30,10CP-AA10,10CP-GT10,CP-CYP7A15,CP-BZP7A15,CP-BZK7C25,10BBE10,CP1BZK7A25,10BA10,CP-BZK7E25,10BAT10,00CR100,10BAC10,10BHT-20,10BZL-02-10,10BZL-01-10,10SEE-10,CP1BZK7D25,CP-BZK7I25,10BZL-03-30,10HSJ100,SC1230,SC1180,SC1190,SC1240",165,202,165,202,38,47,38,47,37,,"CCGT D1_Integrated Programme Schedule;M&E;Procurement;SEL / KS Sub-Contracts;EC&I Subcontract",2,60,0.0004299382,0.096439471,0.0046795524,0,1.0,0.0000812387,0.0136986301,0.1846153846,0.649,0.2475195822,0.0148005148,0.0,1.0,0.0
1.3.2.2.2,58317,"BOP -Mechanical/Pipiing (Self Performed)",7112,"CCGTD1_IPS",WBS,"58313",,,,100,Complete,05/09/2018,28/06/2018,11/10/2018,28/06/2018,,,,,162,188,167,188,37,44,39,44,,,"CCGT D1_Integrated Programme Schedule;M&E;Procurement;SEL / KS Sub-Contracts"
1.3.2.2.2-1,SUB-BOP-160,"Site Mobilization (Pipe Fitter + Welder)",7112,"CCGTD1_IPS",TT_Task,"58317",-,-,-,100,TK_Complete,05/09/2018,28/06/2018,11/10/2018,28/06/2018,"ENG1390 FS,ENG2100 FS,ENG2170 FS,ENG1620 FS,ENG1860 FS,ENG2150 FS,ENG1330 FS,ENG1840 FS,ENG1950 FS,ENG2060 FS,ENG2140 FS,ENG1350 FS,ENG1810 FS,ENG1880 FS,ENG1900 FS,ENG2300 FS,ENG2340 FS,ENG1850 FS,ENG1970 FS,ENG1990 FS,ENG2070 FS,ENG2180 FS,ENG2220 FS,ENG2380 FS,ENG1340 FS,ENG1820 FS,ENG1870 FS,ENG2110 FS,ENG2190 FS,ENG1610 FS,ENG1630 FS,ENG1720 FS,ENG2050 FS,ENG2200 FS,ENG2330 FS,ENG2350 FS,ENG1800 FS,ENG1890 FS,ENG1940 FS,ENG1960 FS,ENG2000 FS,ENG1930 FS,ENG2040 FS,ENG2080 FS,ENG2230 FS,ENG2290 FS,ENG1980 FS,ENG2130 FS,ENG2210 FS,A1010 FS","ENG1390,ENG2100,ENG2170,ENG1620,ENG1860,ENG2150,ENG1330,ENG1840,ENG1950,ENG2060,ENG2140,ENG1350,ENG1810,ENG1880,ENG1900,ENG2300,ENG2340,ENG1850,ENG1970,ENG1990,ENG2070,ENG2180,ENG2220,ENG2380,ENG1340,ENG1820,ENG1870,ENG2110,ENG2190,ENG1610,ENG1630,ENG1720,ENG2050,ENG2200,ENG2330,ENG2350,ENG1800,ENG1890,ENG1940,ENG1960,ENG2000,ENG1930,ENG2040,ENG2080,ENG2230,ENG2290,ENG1980,ENG2130,ENG2210,A1010","10PCB10 FS,00SCA110 FS,10QCD20 FS,10EK10 FS,GKB10 FS,10GM-01-10 FS,FSS22.1060 FS,00UPR10 FS,10PAB-02-10 FS,00GHD-110 FS,10PUR10 FS,10SGA-02-10 FS,00MBH20 FS,00LAB20 FS,10LBA80-20 FS,00EG-01-10 FS,10QCC20 FS,10PAH10 FS,10LBA10-20 FS,10QU20 FS,A3220 FS,00GM-03-10 FS,10GHC10 FS,00MKG20 FS,10SGJ-02-10 FS,00GHD-02-10 FS,00STG20 FS,00SGM-01-10 FS,00PUN10 FS,00GKB-02-10 FS,00PAA10 FS,00GHC-02-20 FS,10LCA-02-10 FS","10PCB10,00SCA110,10QCD20,10EK10,GKB10,10GM-01-10,FSS22.1060,00UPR10,10PAB-02-10,00GHD-110,10PUR10,10SGA-02-10,00MBH20,00LAB20,10LBA80-20,00EG-01-10,10QCC20,10PAH10,10LBA10-20,10QU20,A3220,00GM-03-10,10GHC10,00MKG20,10SGJ-02-10,00GHD-02-10,00STG20,00SGM-01-10,00PUN10,00GKB-02-10,00PAA10,00GHC-02-20,10LCA-02-10",162,188,167,188,37,44,39,44,36,,"CCGT D1_Integrated Programme Schedule;M&E;Procurement;SEL / KS Sub-Contracts;BOP -Mechanical/Pipiing (Self Performed)",50,33,0.0006624625,0.0669379451,0.0103763988,36,1.0,0.001009352,0.3424657534,0.1015384615,1.0,0.1718015666,0.0328185328,0.0807174888,1.0,0.3802926426
1.3.2.2.3,58316,"HRSG Subcontract",7112,"CCGTD1_IPS",WBS,"58313",,,,100,Complete,01/02/2018,06/11/2017,21/03/2018,23/03/2018,,,,,131,155,138,175,30,36,32,40,,,"CCGT D1_Integrated Programme Schedule;M&E;Procurement;SEL / KS Sub-Contracts"
1.3.2.2.3-1,SUB-HRSG-100,"Prepare RFQ Documentation",7112,"CCGTD1_IPS",TT_Task,"58316",-,-,-,100,TK_Complete,01/02/2018,06/11/2017,24/02/2018,24/11/2017,"ENG1780 FS,ENG1830 FS,ENG1750 FS,ENG1760 FS,ENG1770 FS,ENG1790 FS,A1010 FS","ENG1780,ENG1830,ENG1750,ENG1760,ENG1770,ENG1790,A1010","SUB-HRSG-110 FS","SUB-HRSG-110",131,155,134,158,30,36,31,36,18,,"CCGT D1_Integrated Programme Schedule;M&E;Procurement;SEL / KS Sub-Contracts;HRSG Subcontract",7,1,0.0000278648,0.0199389624,0.0016276704,23,1.0,0.0002994288,0.0479452055,0.0030769231,0.0420625,0.0511749347,0.0051480051,0.0515695067,1.0,0.0894029718
1.3.2.2.3-2,SUB-HRSG-110,"Issue RFQ Documentation",7112,"CCGTD1_IPS",TT_FinMile,"58316",-,-,-,100,TK_Complete,24/02/2018,27/11/2017,24/02/2018,27/11/2017,"SUB-HRSG-100 FS","SUB-HRSG-100","SUB-HRSG-120 FS","SUB-HRSG-120",134,158,134,158,31,36,31,36,18,,"CCGT D1_Integrated Programme Schedule;M&E;Procurement;SEL / KS Sub-Contracts;HRSG Subcontract",1,1,0.0000315498,0.0197355036,0.0018311292,0,1.0,0.0000812387,0.0068493151,0.0030769231,0.047625,0.0506527415,0.0057915058,0.0,1.0,0.0
1.3.2.2.3-3,SUB-HRSG-120,"RFQ Process",7112,"CCGTD1_IPS",TT_Task,"58316",-,-,-,100,TK_Complete,26/02/2018,28/11/2017,17/03/2018,15/12/2017,"SUB-HRSG-110 FS","SUB-HRSG-110","SUB-HRSG-130 FS","SUB-HRSG-130",134,158,137,161,31,37,32,37,18,,"CCGT D1_Integrated Programme Schedule;M&E;Procurement;SEL / KS Sub-Contracts;HRSG Subcontract",1,1,0.0000351519,0.0195320448,0.002034588,19,1.0,0.0001503957,0.0068493151,0.0030769231,0.0530625,0.0501305483,0.0064350064,0.0426008969,1.0,0.0283369572
1.3.2.2.3-4,SUB-HRSG-130,"Bid Technical Evaluation/Review Process",7112,"CCGTD1_IPS",TT_Task,"58316",-,-,-,100,TK_Complete,13/02/2018,18/12/2017,01/03/2018,03/01/2018,"SUB-HRSG-120 FS","SUB-HRSG-120","SUB-HRSG-140 FS","SUB-HRSG-140",132,161,135,163,31,37,31,38,18,,"CCGT D1_Integrated Programme Schedule;M&E;Procurement;SEL / KS Sub-Contracts;HRSG Subcontract",1,1,0.0000386712,0.019328586,0.0022380468,16,1.0,0.000209244,0.0068493151,0.0030769231,0.058375,0.0496083551,0.0070785071,0.0358744395,1.0,0.0524499399
1.3.2.2.3-5,SUB-HRSG-150,"Award Sub-Contract Package",7112,"CCGTD1_IPS",TT_FinMile,"58316",-,-,-,100,TK_Complete,01/02/2018,18/01/2018,01/02/2018,18/01/2018,"SUB-HRSG-140 FS","SUB-HRSG-140","SUB-HRSG-170 FS","SUB-HRSG-170",131,165,131,165,30,38,30,38,18,,"CCGT D1_Integrated Programme Schedule;M&E;Procurement;SEL / KS Sub-Contracts;HRSG Subcontract",1,1,0.0000454615,0.0189216684,0.0026449644,0,1.0,0.0000812387,0.0068493151,0.0030769231,0.068625,0.0485639687,0.0083655084,0.0,1.0,0.0
1.3.2.2.3-6,SUB-HRSG-140,"Negoitiations with Selected Sub-Contractor",7112,"CCGTD1_IPS",TT_Task,"58316",-,-,-,100,TK_Complete,02/03/2018,04/01/2018,15/03/2018,17/01/2018,"SUB-HRSG-130 FS","SUB-HRSG-130","SUB-HRSG-150 FS","SUB-HRSG-150",135,163,137,165,31,38,32,38,21,,"CCGT D1_Integrated Programme Schedule;M&E;Procurement;SEL / KS Sub-Contracts;HRSG Subcontract",1,1,0.0000421078,0.0191251272,0.0024415056,13,1.0,0.0002593786,0.0068493151,0.0030769231,0.0635625,0.0490861619,0.0077220077,0.0291479821,1.0,0.0729924654
1.3.2.2.3-7,SUB-HRSG-160,"HRSG Subcontractor Site Mobilization",7112,"CCGTD1_IPS",TT_Task,"58316",-,-,-,100,TK_Complete,16/03/2018,19/02/2018,21/03/2018,07/03/2018,"SUB-HRSG-170 SS","SUB-HRSG-170","SUB-HRSG-180 FS,A4140 SS","SUB-HRSG-180,A4140",137,170,138,172,32,39,32,40,22,,"CCGT D1_Integrated Programme Schedule;M&E;Procurement;SEL / KS Sub-Contracts;HRSG Subcontract",1,2,0.0000006211,0.0185147508,0.003051882,5,0.0,0.000209244,0.0068493151,0.0061538462,0.0009375,0.0475195822,0.0096525097,0.0112107623,0.0,0.0524499399
1.3.2.2.3-8,SUB-HRSG-170,"HRSG Subcontractor Submittal/Approval of Required Documentation (QA/QC, Weld Procedures, HSE, Schedules)",7112,"CCGTD1_IPS",TT_Task,"58316",-,-,-,100,TK_Complete,01/02/2018,18/01/2018,10/03/2018,23/03/2018,"SUB-HRSG-150 FS","SUB-HRSG-150","SUB-HRSG-180 FS,SUB-HRSG-160 SS","SUB-HRSG-180,SUB-HRSG-160",131,165,136,175,30,38,31,40,18,,"CCGT D1_Integrated Programme Schedule;M&E;Procurement;SEL / KS Sub-Contracts;HRSG Subcontract",1,2,0.0000487324,0.0187182096,0.0028484232,37,0.0,0.0001503957,0.0068493151,0.0061538462,0.0735625,0.0480417755,0.009009009,0.0829596413,0.0,0.0283369572
1.3.2.2.3-9,SUB-HRSG-180,"HSRG Contractor Mobilized @ Site - Commencement of Work",7112,"CCGTD1_IPS",TT_Mile,"58316",-,-,-,100,TK_Complete,02/03/2018,08/03/2018,02/03/2018,08/03/2018,"SUB-HRSG-160 FS,SUB-HRSG-170 FS","SUB-HRSG-160,SUB-HRSG-170","HRS09.1030 FS","HRS09.1030",135,172,135,172,31,40,31,40,21,,"CCGT D1_Integrated Programme Schedule;M&E;Procurement;SEL / KS Sub-Contracts;HRSG Subcontract",2,1,0.0000543633,0.0181078332,0.0032553408,0,1.0,0.0000812387,0.0136986301,0.0030769231,0.0820625,0.0464751958,0.0102960103,0.0,1.0,0.0
1.3.2.2.4,58315,"Condenser Subcontract",7112,"CCGTD1_IPS",WBS,"58313",,,,100,Complete,01/03/2018,24/01/2018,30/05/2018,31/03/2018,,,,,135,166,148,176,31,38,34,41,,,"CCGT D1_Integrated Programme Schedule;M&E;Procurement;SEL / KS Sub-Contracts"
1.3.2.2.4-1,SUB-CON-100,"Prepare RFQ Documentation",7112,"CCGTD1_IPS",TT_Task,"58315",-,-,-,100,TK_Complete,01/03/2018,24/01/2018,21/03/2018,13/02/2018,"ENG1070 FS,ENG2020 FS,A1010 FS","ENG1070,ENG2020,A1010","SUB-CON-110 FS","SUB-CON-110",135,166,138,169,31,38,32,39,20,,"CCGT D1_Integrated Programme Schedule;M&E;Procurement;SEL / KS Sub-Contracts;Condenser Subcontract",3,1,0.0000014491,0.0018311292,0.0008138352,20,1.0,0.0001326085,0.0205479452,0.0030769231,0.0021875,0.0046997389,0.0025740026,0.0448430493,1.0,0.0210486577
1.3.2.2.4-2,SUB-CON-110,"Issue RFQ Documentation",7112,"CCGTD1_IPS",TT_FinMile,"58315",-,-,-,100,TK_Complete,21/03/2018,14/02/2018,21/03/2018,14/02/2018,"SUB-CON-100 FS","SUB-CON-100","SUB-CON-120 FS","SUB-CON-120",138,169,138,169,32,39,32,39,23,,"CCGT D1_Integrated Programme Schedule;M&E;Procurement;SEL / KS Sub-Contracts;Condenser Subcontract",1,1,0.0000016148,0.0016276704,0.001017294,0,1.0,0.0000812387,0.0068493151,0.0030769231,0.0024375,0.0041775457,0.0032175032,0.0,1.0,0.0
1.3.2.2.4-3,SUB-CON-120,"RFQ Process",7112,"CCGTD1_IPS",TT_Task,"58315",-,-,-,100,TK_Complete,01/03/2018,15/02/2018,21/03/2018,01/03/2018,"SUB-CON-110 FS","SUB-CON-110","SUB-CON-130 FS","SUB-CON-130",135,169,138,171,31,39,32,40,21,,"CCGT D1_Integrated Programme Schedule;M&E;Procurement;SEL / KS Sub-Contracts;Condenser Subcontract",1,1,0.0000016976,0.0014242116,0.0012207528,20,1.0,0.0001503957,0.0068493151,0.0030769231,0.0025625,0.0036553525,0.0038610039,0.0448430493,1.0,0.0283369572
1.3.2.2.4-4,SUB-CON-150,"Award Sub-Contract Package",7112,"CCGTD1_IPS",TT_FinMile,"58315",-,-,-,100,TK_Complete,13/04/2018,13/03/2018,13/04/2018,13/03/2018,"SUB-CON-140 FS","SUB-CON-140","SUB-CON-170 FS,SUB-CON-160 FS","SUB-CON-170,SUB-CON-160",141,173,141,173,32,40,32,40,24,,"CCGT D1_Integrated Programme Schedule;M&E;Procurement;SEL / KS Sub-Contracts;Condenser Subcontract",1,2,0.0000014491,0.0008138352,0.0018311292,0,1.0,0.0000812387,0.0068493151,0.0061538462,0.0021875,0.0020887728,0.0057915058,0.0,1.0,0.0
1.3.2.2.4-5,SUB-CON-140,"Negoitiations with Selected Sub-Contractor",7112,"CCGTD1_IPS",TT_Task,"58315",-,-,-,100,TK_Complete,10/04/2018,08/03/2018,20/04/2018,12/03/2018,"SUB-CON-130 FS","SUB-CON-130","SUB-CON-150 FS","SUB-CON-150",140,172,142,173,32,40,33,40,24,,"CCGT D1_Integrated Programme Schedule;M&E;Procurement;SEL / KS Sub-Contracts;Condenser Subcontract",1,1,0.0000016148,0.001017294,0.0016276704,10,1.0,0.0002593786,0.0068493151,0.0030769231,0.0024375,0.0026109661,0.0051480051,0.0224215247,1.0,0.0729924654
1.3.2.2.4-6,SUB-CON-160,"Subcontractor Site Mobilization",7112,"CCGTD1_IPS",TT_Task,"58315",-,-,-,100,TK_Complete,24/04/2018,14/03/2018,30/05/2018,31/03/2018,"SUB-CON-150 FS","SUB-CON-150","SUB-CON-180 FS","SUB-CON-180",142,173,148,176,33,40,34,41,25,,"CCGT D1_Integrated Programme Schedule;M&E;Procurement;SEL / KS Sub-Contracts;Condenser Subcontract",1,1,0.0000003933,0.0004069176,0.002034588,36,1.0,0.000120757,0.0068493151,0.0030769231,0.00059375,0.0010443864,0.0064350064,0.0807174888,1.0,0.016192547
1.3.2.2.4-7,SUB-CON-170,"Subcontractor Submittal/Approval of Required Documentation (QA/QC, Weld Procedures, HSE, Schedules)",7112,"CCGTD1_IPS",TT_Task,"58315",-,-,-,100,TK_Complete,01/03/2018,14/03/2018,28/03/2018,28/03/2018,"SUB-CON-150 FS","SUB-CON-150","SUB-CON-180 FS","SUB-CON-180",135,173,139,175,31,40,32,41,21,,"CCGT D1_Integrated Programme Schedule;M&E;Procurement;SEL / KS Sub-Contracts;Condenser Subcontract",1,1,0.0000003933,0.0004069176,0.002034588,27,1.0,0.0001108774,0.0068493151,0.0030769231,0.00059375,0.0010443864,0.0064350064,0.0605381166,1.0,0.0121444102
1.3.2.2.4-8,SUB-CON-130,"Bid Technical Evaluation/Review Process",7112,"CCGTD1_IPS",TT_Task,"58315",-,-,-,100,TK_Complete,22/03/2018,02/03/2018,09/04/2018,07/03/2018,"SUB-CON-120 FS","SUB-CON-120","SUB-CON-140 FS","SUB-CON-140",138,172,140,172,32,40,32,40,23,,"CCGT D1_Integrated Programme Schedule;M&E;Procurement;SEL / KS Sub-Contracts;Condenser Subcontract",1,1,0.0000016976,0.0012207528,0.0014242116,18,1.0,0.000209244,0.0068493151,0.0030769231,0.0025625,0.0031331593,0.0045045045,0.0403587444,1.0,0.0524499399
1.3.2.2.4-9,SUB-CON-180,"Condenser Contractor Mobilized @ Site - Commencement of Work",7112,"CCGTD1_IPS",TT_Mile,"58315",-,-,-,100,TK_Complete,02/05/2018,29/03/2018,02/05/2018,29/03/2018,"SUB-CON-160 FS,SUB-CON-170 FS","SUB-CON-160,SUB-CON-170","A1620 FS","A1620",144,175,144,175,33,41,33,41,26,,"CCGT D1_Integrated Programme Schedule;M&E;Procurement;SEL / KS Sub-Contracts;Condenser Subcontract",2,1,0.0000004554,0.0002034588,0.0024415056,0,1.0,0.0000812387,0.0136986301,0.0030769231,0.0006875,0.0005221932,0.0077220077,0.0,1.0,0.0
1.3.2.2.5,58314,"GT/ST/Generator Subcontractor - EXECUTED IN HOUSE",7112,"CCGTD1_IPS",WBS,"58313",,,,100,Complete,28/02/2018,28/02/2018,26/06/2018,04/06/2018,,,,,135,171,151,185,31,40,35,43,,,"CCGT D1_Integrated Programme Schedule;M&E;Procurement;SEL / KS Sub-Contracts"
1.3.2.2.5-1,Sub-GTST-100,"Prepare RFQ Documentation",7112,"CCGTD1_IPS",TT_Task,"58314",-,-,-,100,TK_Complete,28/02/2018,28/02/2018,28/02/2018,20/03/2018,"A1010 FS","A1010","Sub-GTST-110 FS","Sub-GTST-110",135,171,135,174,31,40,31,40,19,,"CCGT D1_Integrated Programme Schedule;M&E;Procurement;SEL / KS Sub-Contracts;GT/ST/Generator Subcontractor - EXECUTED IN HOUSE",1,1,0.0000002898,0.0575788403,0.0002034588,0,0.0,0.0000812387,0.0068493151,0.0030769231,0.0004375,0.1477806789,0.0006435006,0.0,0.0,0.0
1.3.2.2.5-2,Sub-GTST-110,"Issue RFQ Documentation",7112,"CCGTD1_IPS",TT_FinMile,"58314",-,-,-,100,TK_Complete,01/03/2018,28/02/2018,01/03/2018,28/02/2018,"Sub-GTST-100 FS","Sub-GTST-100","Sub-GTST-120 FS","Sub-GTST-120",135,171,135,171,31,40,31,40,20,,"CCGT D1_Integrated Programme Schedule;M&E;Procurement;SEL / KS Sub-Contracts;GT/ST/Generator Subcontractor - EXECUTED IN HOUSE",1,1,0.0000119243,0.0573753815,0.0004069176,0,1.0,0.0000812387,0.0068493151,0.0030769231,0.018,0.1472584856,0.0012870013,0.0,1.0,0.0
1.3.2.2.5-3,Sub-GTST-120,"RFQ Process",7112,"CCGTD1_IPS",TT_Task,"58314",-,-,-,100,TK_Complete,01/03/2018,28/02/2018,01/03/2018,28/02/2018,"Sub-GTST-110 FS","Sub-GTST-110","Sub-GTST-130 FS","Sub-GTST-130",135,171,135,171,31,40,31,40,20,,"CCGT D1_Integrated Programme Schedule;M&E;Procurement;SEL / KS Sub-Contracts;GT/ST/Generator Subcontractor - EXECUTED IN HOUSE",1,1,0.000023476,0.0571719227,0.0006103764,0,1.0,0.0000812387,0.0068493151,0.0030769231,0.0354375,0.1467362924,0.0019305019,0.0,1.0,0.0
1.3.2.2.5-4,Sub-GTST-130,"Bid Technical Evaluation/Review Process",7112,"CCGTD1_IPS",TT_Task,"58314",-,-,-,100,TK_Complete,01/03/2018,28/02/2018,01/03/2018,28/02/2018,"Sub-GTST-120 FS","Sub-GTST-120","Sub-GTST-140 FS","Sub-GTST-140",135,171,135,171,31,40,31,40,20,,"CCGT D1_Integrated Programme Schedule;M&E;Procurement;SEL / KS Sub-Contracts;GT/ST/Generator Subcontractor - EXECUTED IN HOUSE",1,1,0.0000349449,0.0569684639,0.0008138352,0,1.0,0.0000812387,0.0068493151,0.0030769231,0.05275,0.1462140992,0.0025740026,0.0,1.0,0.0
1.3.2.2.5-5,Sub-GTST-150,"Award Sub-Contract Package",7112,"CCGTD1_IPS",TT_FinMile,"58314",-,-,-,100,TK_Complete,28/03/2018,28/02/2018,28/03/2018,28/02/2018,"Sub-GTST-140 FS","Sub-GTST-140","Sub-GTST-170 FS,Sub-GTST-160 FS","Sub-GTST-170,Sub-GTST-160",139,171,139,171,32,40,32,40,23,,"CCGT D1_Integrated Programme Schedule;M&E;Procurement;SEL / KS Sub-Contracts;GT/ST/Generator Subcontractor - EXECUTED IN HOUSE",1,2,0.0000576342,0.0565615463,0.0012207528,0,1.0,0.0000812387,0.0068493151,0.0061538462,0.087,0.1451697128,0.0038610039,0.0,1.0,0.0
1.3.2.2.5-6,Sub-GTST-140,"Negoitiations with Selected Sub-Contractor",7112,"CCGTD1_IPS",TT_Task,"58314",-,-,-,100,TK_Complete,15/03/2018,28/02/2018,15/03/2018,28/02/2018,"Sub-GTST-130 FS","Sub-GTST-130","Sub-GTST-150 FS","Sub-GTST-150",137,171,137,171,32,40,32,40,22,,"CCGT D1_Integrated Programme Schedule;M&E;Procurement;SEL / KS Sub-Contracts;GT/ST/Generator Subcontractor - EXECUTED IN HOUSE",1,1,0.000046331,0.0567650051,0.001017294,0,1.0,0.0000812387,0.0068493151,0.0030769231,0.0699375,0.145691906,0.0032175032,0.0,1.0,0.0
1.3.2.2.5-7,Sub-GTST-160,"Subcontractor Site Mobilization",7112,"CCGTD1_IPS",TT_Task,"58314",-,-,-,100,TK_Complete,29/03/2018,28/02/2018,29/03/2018,28/02/2018,"Sub-GTST-150 FS","Sub-GTST-150","Sub-GTST-180 FS","Sub-GTST-180",139,171,139,171,32,40,32,40,24,,"CCGT D1_Integrated Programme Schedule;M&E;Procurement;SEL / KS Sub-Contracts;GT/ST/Generator Subcontractor - EXECUTED IN HOUSE",1,1,0.0000342824,0.0561546287,0.0014242116,0,1.0,0.0000812387,0.0068493151,0.0030769231,0.05175,0.1441253264,0.0045045045,0.0,1.0,0.0
1.3.2.2.5-8,Sub-GTST-180,"GT/ST/Generator Mobilized @ Site - Commencement of Work",7112,"CCGTD1_IPS",TT_Mile,"58314",-,-,-,100,TK_Complete,26/06/2018,04/06/2018,26/06/2018,04/06/2018,"Sub-GTST-160 FS,Sub-GTST-170 FS,SP1MA-3-80 FS","Sub-GTST-160,Sub-GTST-170,SP1MA-3-80","10MBL1000 FS,10MKW10 FS,10MBR1000 FS,10MBX05 FS,10MBU10 FS,10MBN10 FS,10MBA4x10 FS,10MBA18-100 FS,10MKQ10 FS,10MBH10 FS,00MBU10 FS,10MBX2x05 FS,10MBA5x05 FS,10MKA1000 FS,10MAX10 FS,10MKF10 FS,10MBV1000 FS,10MBA1000 FS","10MBL1000,10MKW10,10MBR1000,10MBX05,10MBU10,10MBN10,10MBA4x10,10MBA18-100,10MKQ10,10MBH10,00MBU10,10MBX2x05,10MBA5x05,10MKA1000,10MAX10,10MKF10,10MBV1000,10MBA1000",151,185,151,185,35,43,35,43,31,,"CCGT D1_Integrated Programme Schedule;M&E;Procurement;SEL / KS Sub-Contracts;GT/ST/Generator Subcontractor - EXECUTED IN HOUSE",3,18,0.0000997506,0.0559511699,0.002034588,0,1.0,0.0000812387,0.0205479452,0.0553846154,0.1505755208,0.1436031332,0.0064350064,0.0,1.0,0.0
1.3.2.2.5-9,Sub-GTST-170,"Subcontractor Submittal/Approval of Required Documentation (QA/QC, Weld Procedures, HSE, Schedules)",7112,"CCGTD1_IPS",TT_Task,"58314",-,-,-,100,TK_Complete,29/03/2018,28/02/2018,29/03/2018,28/02/2018,"Sub-GTST-150 FS","Sub-GTST-150","Sub-GTST-180 FS","Sub-GTST-180",139,171,139,171,32,40,32,40,24,,"CCGT D1_Integrated Programme Schedule;M&E;Procurement;SEL / KS Sub-Contracts;GT/ST/Generator Subcontractor - EXECUTED IN HOUSE",1,1,0.0000342824,0.0561546287,0.0014242116,0,1.0,0.0000812387,0.0068493151,0.0030769231,0.05175,0.1441253264,0.0045045045,0.0,1.0,0.0
1.3.3,58309,"Engineering",7112,"CCGTD1_IPS",WBS,"58236",,,,100,Complete,01/02/2018,31/10/2017,02/12/2019,31/05/2018,,,,,131,154,226,184,30,36,52,43,,,"CCGT D1_Integrated Programme Schedule;M&E"
1.3.3.1,58311,"CLP Deliverables",7112,"CCGTD1_IPS",WBS,"58309",,,,100,Complete,01/03/2018,31/10/2017,02/12/2019,31/05/2018,,,,,135,154,226,184,31,36,52,43,,,"CCGT D1_Integrated Programme Schedule;M&E;Engineering"
1.3.3.1-1,ENG1000,"Engineering complete - (00BAW-01) Earthing Grid for back-energizing",7112,"CCGTD1_IPS",TT_FinMile,"58311",-,-,-,100,TK_Complete,01/03/2018,22/01/2018,01/03/2018,22/01/2018,"A1010 FS,ENG0000 FS","A1010,ENG0000","ITP1000 FS,SUB-EIC-100 FS","ITP1000,SUB-EIC-100",135,166,135,166,31,38,31,38,20,,"CCGT D1_Integrated Programme Schedule;M&E;Engineering;CLP Deliverables",2,2,0.0000014682,0.098474059,0.0004069176,0,1.0,0.0000812387,0.0136986301,0.0061538462,0.0022163462,0.2527415144,0.0012870013,0.0,1.0,0.0
1.3.3.1-2,ENG1010,"Engineering complete - (00BAW-02) Earthing Grid Complete",7112,"CCGTD1_IPS",TT_FinMile,"58311",-,-,-,100,TK_Complete,01/03/2018,05/02/2018,01/03/2018,05/02/2018,"A1010 FS,ENG0000 FS","A1010,ENG0000","SUB-EIC-100 FS,ITP1010 FS","SUB-EIC-100,ITP1010",135,168,135,168,31,39,31,39,20,,"CCGT D1_Integrated Programme Schedule;M&E;Engineering;CLP Deliverables",2,2,0.0000014682,0.098474059,0.0004069176,0,1.0,0.0000812387,0.0136986301,0.0061538462,0.0022163462,0.2527415144,0.0012870013,0.0,1.0,0.0
1.3.3.1-3,ENG1020,"Engineering complete - (00BAW-03) Lightening Protection",7112,"CCGTD1_IPS",TT_FinMile,"58311",-,-,-,100,TK_Complete,01/03/2018,22/01/2018,01/03/2018,22/01/2018,"A1010 FS,ENG0000 FS","A1010,ENG0000","SUB-EIC-100 FS,ITP1020 FS","SUB-EIC-100,ITP1020",135,166,135,166,31,38,31,38,20,,"CCGT D1_Integrated Programme Schedule;M&E;Engineering;CLP Deliverables",2,2,0.0000014682,0.098474059,0.0004069176,0,1.0,0.0000812387,0.0136986301,0.0061538462,0.0022163462,0.2527415144,0.0012870013,0.0,1.0,0.0
1.3.3.1-4,ENG2310,"Engineering complete - (10BZL-03) L&SP incl. BMZ in UBA and UBF and UBE",7112,"CCGTD1_IPS",TT_FinMile,"58311",-,-,-,100,TK_Complete,02/12/2019,31/10/2017,02/12/2019,31/10/2017,"A1010 FS,ENG0000 FS","A1010,ENG0000","SUB-EIC-100 FS","SUB-EIC-100",226,154,226,154,52,36,52,36,84,,"CCGT D1_Integrated Programme Schedule;M&E;Engineering;CLP Deliverables",2,1,0.0000013854,0.0982706002,0.0004069176,0,1.0,0.0000812387,0.0136986301,0.0030769231,0.0020913462,0.2522193211,0.0012870013,0.0,1.0,0.0
1.3.3.1-5,ENG2370,"Engineering complete - (10CY) Communication / Security Systems 10",7112,"CCGTD1_IPS",TT_FinMile,"58311",-,-,-,100,TK_Complete,02/12/2019,31/10/2017,02/12/2019,31/10/2017,"A1010 FS,ENG0000 FS","A1010,ENG0000","SUB-EIC-100 FS","SUB-EIC-100",226,154,226,154,52,36,52,36,84,,"CCGT D1_Integrated Programme Schedule;M&E;Engineering;CLP Deliverables",2,1,0.0000013854,0.0982706002,0.0004069176,0,1.0,0.0000812387,0.0136986301,0.0030769231,0.0020913462,0.2522193211,0.0012870013,0.0,1.0,0.0
1.3.3.1-6,ENG2320,"Engineering complete - (10BZL-01) L&SP incl BMZ inside 10UMC",7112,"CCGTD1_IPS",TT_FinMile,"58311",-,-,-,100,TK_Complete,02/12/2019,31/10/2017,02/12/2019,31/10/2017,"A1010 FS,ENG0000 FS","A1010,ENG0000","SUB-EIC-100 FF,SUB-EIC-100 FS","SUB-EIC-100,SUB-EIC-100",226,154,226,154,52,36,52,36,84,,"CCGT D1_Integrated Programme Schedule;M&E;Engineering;CLP Deliverables",2,1,0.0000013854,0.0982706002,0.0004069176,0,1.0,0.0000812387,0.0136986301,0.0030769231,0.0020913462,0.2522193211,0.0012870013,0.0,1.0,0.0
1.3.3.1-7,ENG2330,"Engineering complete - (00GM-03) Plant Drainage System Pump for UGD (incl. UGU)",7112,"CCGTD1_IPS",TT_FinMile,"58311",-,-,-,100,TK_Complete,02/12/2019,31/10/2017,02/12/2019,31/10/2017,"A1010 FS,ENG0000 FS","A1010,ENG0000","SUB-BOP-160 FS,00SCA110 FS","SUB-BOP-160,00SCA110",226,154,226,154,52,36,52,36,84,,"CCGT D1_Integrated Programme Schedule;M&E;Engineering;CLP Deliverables",2,2,0.0000002788,0.0671414039,0.0004069176,0,1.0,0.0000812387,0.0136986301,0.0061538462,0.0004209184,0.1723237598,0.0012870013,0.0,1.0,0.0
1.3.3.1-8,ENG2340,"Engineering complete - (00GHD-02) Service Water Distribution Inside Power Block",7112,"CCGTD1_IPS",TT_FinMile,"58311",-,-,-,100,TK_Complete,02/12/2019,31/10/2017,02/12/2019,31/10/2017,"A1010 FS,ENG0000 FS","A1010,ENG0000","SUB-BOP-160 FS,00SCA110 FS","SUB-BOP-160,00SCA110",226,154,226,154,52,36,52,36,84,,"CCGT D1_Integrated Programme Schedule;M&E;Engineering;CLP Deliverables",2,2,0.0000002788,0.0671414039,0.0004069176,0,1.0,0.0000812387,0.0136986301,0.0061538462,0.0004209184,0.1723237598,0.0012870013,0.0,1.0,0.0
1.3.3.1-9,ENG2350,"Engineering complete - (00GKB-02) Drinking Water Distribution Inside Power Block",7112,"CCGTD1_IPS",TT_FinMile,"58311",-,-,-,100,TK_Complete,02/12/2019,31/10/2017,02/12/2019,31/10/2017,"A1010 FS,ENG0000 FS","A1010,ENG0000","SUB-BOP-160 FS,00SCA110 FS","SUB-BOP-160,00SCA110",226,154,226,154,52,36,52,36,84,,"CCGT D1_Integrated Programme Schedule;M&E;Engineering;CLP Deliverables",2,2,0.0000002788,0.0671414039,0.0004069176,0,1.0,0.0000812387,0.0136986301,0.0061538462,0.0004209184,0.1723237598,0.0012870013,0.0,1.0,0.0
1.3.3.1-10,ENG2380,"Engineering complete - (10GM-02) Plant Drainage System for 10U MC",7112,"CCGTD1_IPS",TT_FinMile,"58311",-,-,-,100,TK_Complete,02/12/2019,31/10/2017,02/12/2019,31/10/2017,"A1010 FS,ENG0000 FS","A1010,ENG0000","SUB-BOP-160 FS,00SCA110 FS","SUB-BOP-160,00SCA110",226,154,226,154,52,36,52,36,84,,"CCGT D1_Integrated Programme Schedule;M&E;Engineering;CLP Deliverables",2,2,0.0000002788,0.0671414039,0.0004069176,0,1.0,0.0000812387,0.0136986301,0.0061538462,0.0004209184,0.1723237598,0.0012870013,0.0,1.0,0.0
1.3.3.1-11,ENG1030,"Engineering complete - (10MA-01) HP / IP / LP Turbine 10MAA/MAB/MAC",7112,"CCGTD1_IPS",TT_FinMile,"58311",-,-,-,100,TK_Complete,01/03/2018,23/02/2018,01/03/2018,23/02/2018,"A1010 FS,ENG0000 FS","A1010,ENG0000","ITP1030 FS","ITP1030",135,171,135,171,31,39,31,39,20,,"CCGT D1_Integrated Programme Schedule;M&E;Engineering;CLP Deliverables",2,1,0.0000000828,0.0002034588,0.0004069176,0,1.0,0.0000812387,0.0136986301,0.0030769231,0.000125,0.0005221932,0.0012870013,0.0,1.0,0.0
1.3.3.1-12,ENG1040,"Engineering complete - (10MAL) ST Drain System",7112,"CCGTD1_IPS",TT_FinMile,"58311",-,-,-,100,TK_Complete,01/03/2018,19/03/2018,01/03/2018,19/03/2018,"A1010 FS,ENG0000 FS","A1010,ENG0000","","",135,174,135,174,31,40,31,40,20,,"CCGT D1_Integrated Programme Schedule;M&E;Engineering;CLP Deliverables",2,0,0.0,0.0,0.0004069176,0,1.0,0.0000812387,0.0136986301,0.0,0.0,0.0,0.0012870013,0.0,1.0,0.0
1.3.3.1-13,ENG1060,"Engineering complete - (10MA-02) HP / IP / LP Steam Turbine Emergency Stop Valves and Control Valves",7112,"CCGTD1_IPS",TT_FinMile,"58311",-,-,-,100,TK_Complete,01/03/2018,19/03/2018,01/03/2018,19/03/2018,"A1010 FS,ENG0000 FS","A1010,ENG0000","","",135,174,135,174,31,40,31,40,20,,"CCGT D1_Integrated Programme Schedule;M&E;Engineering;CLP Deliverables",2,0,0.0,0.0,0.0004069176,0,1.0,0.0000812387,0.0136986301,0.0,0.0,0.0,0.0012870013,0.0,1.0,0.0
1.3.3.1-14,ENG1070,"Engineering complete - (10MAG) Condensing System",7112,"CCGTD1_IPS",TT_FinMile,"58311",-,-,-,100,TK_Complete,01/03/2018,23/01/2018,01/03/2018,23/01/2018,"A1010 FS,ENG0000 FS","A1010,ENG0000","SUB-CON-100 FS,ITP1070 FS,MS1070 FS","SUB-CON-100,ITP1070,MS1070",135,166,135,166,31,38,31,38,20,,"CCGT D1_Integrated Programme Schedule;M&E;Engineering;CLP Deliverables",2,3,0.0000003726,0.0024415056,0.0004069176,0,1.0,0.0000812387,0.0136986301,0.0092307692,0.0005625,0.0062663185,0.0012870013,0.0,1.0,0.0
1.3.3.1-15,ENG1080,"Engineering complete - (10MAV) Lube and Lifting Oil System Incl. Generator and GT",7112,"CCGTD1_IPS",TT_FinMile,"58311",-,-,-,100,TK_Complete,19/03/2018,19/03/2018,19/03/2018,19/03/2018,"A1010 FS,ENG0000 FS","A1010,ENG0000","ITP1080 FS","ITP1080",137,174,137,174,32,40,32,40,22,,"CCGT D1_Integrated Programme Schedule;M&E;Engineering;CLP Deliverables",2,1,0.0000000828,0.0002034588,0.0004069176,0,1.0,0.0000812387,0.0136986301,0.0030769231,0.000125,0.0005221932,0.0012870013,0.0,1.0,0.0
1.3.3.1-16,ENG1090,"Engineering complete - (10MAW) Gland / Leakage Steam System",7112,"CCGTD1_IPS",TT_FinMile,"58311",-,-,-,100,TK_Complete,01/03/2018,19/03/2018,01/03/2018,19/03/2018,"A1010 FS,ENG0000 FS","A1010,ENG0000","ITP1090 FS","ITP1090",135,174,135,174,31,40,31,40,20,,"CCGT D1_Integrated Programme Schedule;M&E;Engineering;CLP Deliverables",2,1,0.0000000828,0.0002034588,0.0004069176,0,1.0,0.0000812387,0.0136986301,0.0030769231,0.000125,0.0005221932,0.0012870013,0.0,1.0,0.0
1.3.3.1-17,ENG1100,"Engineering complete - (10MAX) ST Hydraulic System",7112,"CCGTD1_IPS",TT_FinMile,"58311",-,-,-,100,TK_Complete,01/03/2018,19/03/2018,01/03/2018,19/03/2018,"A1010 FS,ENG0000 FS","A1010,ENG0000","ITP1100 FS","ITP1100",135,174,135,174,31,40,31,40,20,,"CCGT D1_Integrated Programme Schedule;M&E;Engineering;CLP Deliverables",2,1,0.0000000828,0.0002034588,0.0004069176,0,1.0,0.0000812387,0.0136986301,0.0030769231,0.000125,0.0005221932,0.0012870013,0.0,1.0,0.0
1.3.3.1-18,ENG1120,"Engineering complete - (10MKA) Generator Incl. Bearing System 10 MKD",7112,"CCGTD1_IPS",TT_FinMile,"58311",-,-,-,100,TK_Complete,01/03/2018,30/11/2017,01/03/2018,30/11/2017,"A1010 FS,ENG0000 FS","A1010,ENG0000","ITP1120 FS,MS1120 FS","ITP1120,MS1120",135,158,135,158,31,37,31,37,20,,"CCGT D1_Integrated Programme Schedule;M&E;Engineering;CLP Deliverables",2,2,0.0000001656,0.0004069176,0.0004069176,0,1.0,0.0000812387,0.0136986301,0.0061538462,0.00025,0.0010443864,0.0012870013,0.0,1.0,0.0
1.3.3.1-19,ENG1170,"Engineering complete - (10MBV) GT Lube Oil / Lifting Oil System",7112,"CCGTD1_IPS",TT_FinMile,"58311",-,-,-,100,TK_Complete,01/03/2018,16/03/2018,01/03/2018,16/03/2018,"A1010 FS,ENG0000 FS","A1010,ENG0000","","",135,174,135,174,31,40,31,40,20,,"CCGT D1_Integrated Programme Schedule;M&E;Engineering;CLP Deliverables",2,0,0.0,0.0,0.0004069176,0,1.0,0.0000812387,0.0136986301,0.0,0.0,0.0,0.0012870013,0.0,1.0,0.0
1.3.3.1-20,ENG1180,"Engineering complete - (10MBA) GT Including Combustion Chamber",7112,"CCGTD1_IPS",TT_FinMile,"58311",-,-,-,100,TK_Complete,01/03/2018,12/02/2018,01/03/2018,12/02/2018,"A1010 FS,ENG0000 FS","A1010,ENG0000","ITP1180 FS","ITP1180",135,169,135,169,31,39,31,39,20,,"CCGT D1_Integrated Programme Schedule;M&E;Engineering;CLP Deliverables",2,1,0.0000000828,0.0002034588,0.0004069176,0,1.0,0.0000812387,0.0136986301,0.0030769231,0.000125,0.0005221932,0.0012870013,0.0,1.0,0.0
1.3.3.1-21,ENG1190,"Engineering complete - (10MBX) GT Hydraulic Oil",7112,"CCGTD1_IPS",TT_FinMile,"58311",-,-,-,100,TK_Complete,01/03/2018,16/02/2018,01/03/2018,16/02/2018,"A1010 FS,ENG0000 FS","A1010,ENG0000","ITP1190 FS","ITP1190",135,170,135,170,31,39,31,39,20,,"CCGT D1_Integrated Programme Schedule;M&E;Engineering;CLP Deliverables",2,1,0.0000000828,0.0002034588,0.0004069176,0,1.0,0.0000812387,0.0136986301,0.0030769231,0.000125,0.0005221932,0.0012870013,0.0,1.0,0.0
1.3.3.1-22,ENG1200,"Engineering complete - (10MBP) GT Natural Gas Incl. Draining System MBP40",7112,"CCGTD1_IPS",TT_FinMile,"58311",-,-,-,100,TK_Complete,01/03/2018,16/03/2018,01/03/2018,16/03/2018,"A1010 FS,ENG0000 FS","A1010,ENG0000","ITP1200 FS","ITP1200",135,174,135,174,31,40,31,40,20,,"CCGT D1_Integrated Programme Schedule;M&E;Engineering;CLP Deliverables",2,1,0.0000000828,0.0002034588,0.0004069176,0,1.0,0.0000812387,0.0136986301,0.0030769231,0.000125,0.0005221932,0.0012870013,0.0,1.0,0.0
1.3.3.1-23,ENG1210,"Engineering complete - (10MBN) GT Fuel Oil Injection System",7112,"CCGTD1_IPS",TT_FinMile,"58311",-,-,-,100,TK_Complete,01/03/2018,16/03/2018,01/03/2018,16/03/2018,"A1010 FS,ENG0000 FS","A1010,ENG0000","ITP1210 FS","ITP1210",135,174,135,174,31,40,31,40,20,,"CCGT D1_Integrated Programme Schedule;M&E;Engineering;CLP Deliverables",2,1,0.0000000828,0.0002034588,0.0004069176,0,1.0,0.0000812387,0.0136986301,0.0030769231,0.000125,0.0005221932,0.0012870013,0.0,1.0,0.0
1.3.3.1-24,ENG1250,"Engineering complete - (10MBX2x) GT Pneumatic System",7112,"CCGTD1_IPS",TT_FinMile,"58311",-,-,-,100,TK_Complete,01/03/2018,12/02/2018,01/03/2018,12/02/2018,"A1010 FS,ENG0000 FS","A1010,ENG0000","ITP1250 FS","ITP1250",135,169,135,169,31,39,31,39,20,,"CCGT D1_Integrated Programme Schedule;M&E;Engineering;CLP Deliverables",2,1,0.0000000828,0.0002034588,0.0004069176,0,1.0,0.0000812387,0.0136986301,0.0030769231,0.000125,0.0005221932,0.0012870013,0.0,1.0,0.0
1.3.3.1-25,ENG1280,"Engineering complete - (10MBL) Air Intake System",7112,"CCGTD1_IPS",TT_FinMile,"58311",-,-,-,100,TK_Complete,01/03/2018,19/03/2018,01/03/2018,19/03/2018,"A1010 FS,ENG0000 FS","A1010,ENG0000","ITP1280 FS","ITP1280",135,174,135,174,31,40,31,40,20,,"CCGT D1_Integrated Programme Schedule;M&E;Engineering;CLP Deliverables",2,1,0.0000000828,0.0002034588,0.0004069176,0,1.0,0.0000812387,0.0136986301,0.0030769231,0.000125,0.0005221932,0.0012870013,0.0,1.0,0.0
1.3.3.1-26,ENG1290,"Engineering complete - (10MBU) GT NOX Water Injection System",7112,"CCGTD1_IPS",TT_FinMile,"58311",-,-,-,100,TK_Complete,01/03/2018,16/03/2018,01/03/2018,16/03/2018,"A1010 FS,ENG0000 FS","A1010,ENG0000","ITP1290 FS","ITP1290",135,174,135,174,31,40,31,40,20,,"CCGT D1_Integrated Programme Schedule;M&E;Engineering;CLP Deliverables",2,1,0.0000000828,0.0002034588,0.0004069176,0,1.0,0.0000812387,0.0136986301,0.0030769231,0.000125,0.0005221932,0.0012870013,0.0,1.0,0.0
1.3.3.1-27,ENG1300,"Engineering complete - (10SAM30) Ventilation System For GT Enclosure and Skid Enclosures",7112,"CCGTD1_IPS",TT_FinMile,"58311",-,-,-,100,TK_Complete,01/03/2018,12/03/2018,01/03/2018,12/03/2018,"A1010 FS,ENG0000 FS","A1010,ENG0000","","",135,173,135,173,31,40,31,40,20,,"CCGT D1_Integrated Programme Schedule;M&E;Engineering;CLP Deliverables",2,0,0.0,0.0,0.0004069176,0,1.0,0.0000812387,0.0136986301,0.0,0.0,0.0,0.0012870013,0.0,1.0,0.0
1.3.3.1-28,ENG1330,"Engineering complete - (10LCA) Main Condensate Pumps and Supply System for Min. Flow Operation Incl.",7112,"CCGTD1_IPS",TT_FinMile,"58311",-,-,-,100,TK_Complete,01/03/2018,19/03/2018,01/03/2018,19/03/2018,"A1010 FS,ENG0000 FS","A1010,ENG0000","ITP1330 FS,SUB-BOP-160 FS,00SCA110 FS","ITP1330,SUB-BOP-160,00SCA110",135,174,135,174,31,40,31,40,20,,"CCGT D1_Integrated Programme Schedule;M&E;Engineering;CLP Deliverables",2,3,0.0000003617,0.0673448627,0.0004069176,0,1.0,0.0000812387,0.0136986301,0.0092307692,0.0005459184,0.172845953,0.0012870013,0.0,1.0,0.0
1.3.3.1-29,ENG1340,"Engineering complete - (10PGB) Closed Cooling Water System",7112,"CCGTD1_IPS",TT_FinMile,"58311",-,-,-,100,TK_Complete,01/03/2018,12/03/2018,01/03/2018,12/03/2018,"A1010 FS,ENG0000 FS","A1010,ENG0000","ITP1340 FS,SUB-BOP-160 FS,00SCA110 FS","ITP1340,SUB-BOP-160,00SCA110",135,173,135,173,31,40,31,40,20,,"CCGT D1_Integrated Programme Schedule;M&E;Engineering;CLP Deliverables",2,3,0.0000003617,0.0673448627,0.0004069176,0,1.0,0.0000812387,0.0136986301,0.0092307692,0.0005459184,0.172845953,0.0012870013,0.0,1.0,0.0
1.3.3.1-30,ENG1350,"Engineering complete - (10PCB) Service Cooling Water System Incl. 10PDB",7112,"CCGTD1_IPS",TT_FinMile,"58311",-,-,-,100,TK_Complete,01/03/2018,12/03/2018,01/03/2018,12/03/2018,"A1010 FS,ENG0000 FS","A1010,ENG0000","ITP1350 FS,SUB-BOP-160 FS,00SCA110 FS","ITP1350,SUB-BOP-160,00SCA110",135,173,135,173,31,40,31,40,20,,"CCGT D1_Integrated Programme Schedule;M&E;Engineering;CLP Deliverables",2,3,0.0000003617,0.0673448627,0.0004069176,0,1.0,0.0000812387,0.0136986301,0.0092307692,0.0005459184,0.172845953,0.0012870013,0.0,1.0,0.0
1.3.3.1-31,ENG1390,"Engineering complete - (10SGA) FF Indoor Hydrants 10SGA Inside 10ULA, 10UHA, 10UMC",7112,"CCGTD1_IPS",TT_FinMile,"58311",-,-,-,100,TK_Complete,01/03/2018,19/03/2018,01/03/2018,19/03/2018,"A1010 FS,ENG0000 FS","A1010,ENG0000","ITP1390 FS,SUB-BOP-160 FS,00SCA110 FS","ITP1390,SUB-BOP-160,00SCA110",135,174,135,174,31,40,31,40,20,,"CCGT D1_Integrated Programme Schedule;M&E;Engineering;CLP Deliverables",2,3,0.0000003617,0.0673448627,0.0004069176,0,1.0,0.0000812387,0.0136986301,0.0092307692,0.0005459184,0.172845953,0.0012870013,0.0,1.0,0.0
1.3.3.1-32,ENG2360,"Engineering complete - (10MAD) ST Bearing System",7112,"CCGTD1_IPS",TT_FinMile,"58311",-,-,-,100,TK_Complete,02/12/2019,31/10/2017,02/12/2019,31/10/2017,"A1010 FS,ENG0000 FS","A1010,ENG0000","ITP2360 FS","ITP2360",226,154,226,154,52,36,52,36,84,,"CCGT D1_Integrated Programme Schedule;M&E;Engineering;CLP Deliverables",2,1,0.0000000828,0.0002034588,0.0004069176,0,1.0,0.0000812387,0.0136986301,0.0030769231,0.000125,0.0005221932,0.0012870013,0.0,1.0,0.0
1.3.3.1-33,ENG1220,"Engineering complete - (10MBH) GT Cooling Air System",7112,"CCGTD1_IPS",TT_FinMile,"58311",-,-,-,100,TK_Complete,01/03/2018,12/02/2018,01/03/2018,12/02/2018,"A1010 FS,ENG0000 FS","A1010,ENG0000","ITP1220 FS","ITP1220",135,169,135,169,31,39,31,39,20,,"CCGT D1_Integrated Programme Schedule;M&E;Engineering;CLP Deliverables",2,1,0.0000000828,0.0002034588,0.0004069176,0,1.0,0.0000812387,0.0136986301,0.0030769231,0.000125,0.0005221932,0.0012870013,0.0,1.0,0.0
1.3.3.1-34,ENG1600,"Engineering complete - (10MKC) SEE/SFC Equipment Excitation Transformer MKC; SFC Transformer MBJ",7112,"CCGTD1_IPS",TT_FinMile,"58311",-,-,-,100,TK_Complete,01/03/2018,07/03/2018,01/03/2018,07/03/2018,"A1010 FS,ENG0000 FS","A1010,ENG0000","ITP1600 FS,SUB-EIC-100 FS","ITP1600,SUB-EIC-100",135,172,135,172,31,40,31,40,20,,"CCGT D1_Integrated Programme Schedule;M&E;Engineering;CLP Deliverables",2,2,0.0000014682,0.098474059,0.0004069176,0,1.0,0.0000812387,0.0136986301,0.0061538462,0.0022163462,0.2527415144,0.0012870013,0.0,1.0,0.0
1.3.3.1-35,ENG1610,"Engineering complete - (10SGC-01) FF Spary Deluge System for BAT/ BBT SGC",7112,"CCGTD1_IPS",TT_FinMile,"58311",-,-,-,100,TK_Complete,01/03/2018,19/03/2018,01/03/2018,19/03/2018,"A1010 FS,ENG0000 FS","A1010,ENG0000","ITP1610 FS,SUB-BOP-160 FS,00SCA110 FS","ITP1610,SUB-BOP-160,00SCA110",135,174,135,174,31,40,31,40,20,,"CCGT D1_Integrated Programme Schedule;M&E;Engineering;CLP Deliverables",2,3,0.0000003617,0.0673448627,0.0004069176,0,1.0,0.0000812387,0.0136986301,0.0092307692,0.0005459184,0.172845953,0.0012870013,0.0,1.0,0.0
1.3.3.1-36,ENG1620,"Engineering complete - (10LD) Condensate Polishing Plant",7112,"CCGTD1_IPS",TT_FinMile,"58311",-,-,-,100,TK_Complete,01/03/2018,12/03/2018,01/03/2018,12/03/2018,"A1010 FS,ENG0000 FS","A1010,ENG0000","ITP1620 FS,SUB-BOP-160 FS,00SCA110 FS","ITP1620,SUB-BOP-160,00SCA110",135,173,135,173,31,40,31,40,20,,"CCGT D1_Integrated Programme Schedule;M&E;Engineering;CLP Deliverables",2,3,0.0000003617,0.0673448627,0.0004069176,0,1.0,0.0000812387,0.0136986301,0.0092307692,0.0005459184,0.172845953,0.0012870013,0.0,1.0,0.0
1.3.3.1-37,ENG1630,"Engineering complete - (10LDK) Condensate Polishing System",7112,"CCGTD1_IPS",TT_FinMile,"58311",-,-,-,100,TK_Complete,01/03/2018,12/03/2018,01/03/2018,12/03/2018,"A1010 FS,ENG0000 FS","A1010,ENG0000","ITP1630 FS,SUB-BOP-160 FS,00SCA110 FS","ITP1630,SUB-BOP-160,00SCA110",135,173,135,173,31,40,31,40,20,,"CCGT D1_Integrated Programme Schedule;M&E;Engineering;CLP Deliverables",2,3,0.0000003617,0.0673448627,0.0004069176,0,1.0,0.0000812387,0.0136986301,0.0092307692,0.0005459184,0.172845953,0.0012870013,0.0,1.0,0.0
1.3.3.1-38,ENG1710,"Engineering complete - (10MBR) Exhaust Gas System",7112,"CCGTD1_IPS",TT_FinMile,"58311",-,-,-,100,TK_Complete,01/03/2018,12/03/2018,01/03/2018,12/03/2018,"A1010 FS,ENG0000 FS","A1010,ENG0000","ITP1710 FS","ITP1710",135,173,135,173,31,40,31,40,20,,"CCGT D1_Integrated Programme Schedule;M&E;Engineering;CLP Deliverables",2,1,0.0000000828,0.0002034588,0.0004069176,0,1.0,0.0000812387,0.0136986301,0.0030769231,0.000125,0.0005221932,0.0012870013,0.0,1.0,0.0
1.3.3.1-39,ENG1720,"Engineering complete - (10EK) Fuel Gas Supply System for GT10",7112,"CCGTD1_IPS",TT_FinMile,"58311",-,-,-,100,TK_Complete,28/05/2018,31/05/2018,28/05/2018,31/05/2018,"A1010 FS,ENG0000 FS","A1010,ENG0000","ITP1720 FS,SUB-BOP-160 FS,00SCA110 FS","ITP1720,SUB-BOP-160,00SCA110",147,184,147,184,34,43,34,43,29,,"CCGT D1_Integrated Programme Schedule;M&E;Engineering;CLP Deliverables",2,3,0.0000003617,0.0673448627,0.0004069176,0,1.0,0.0000812387,0.0136986301,0.0092307692,0.0005459184,0.172845953,0.0012870013,0.0,1.0,0.0
1.3.3.1-40,ENG1750,"Engineering complete - (10HAD10) HRSG HP Steam",7112,"CCGTD1_IPS",TT_FinMile,"58311",-,-,-,100,TK_Complete,01/03/2018,22/01/2018,01/03/2018,22/01/2018,"A1010 FS,ENG0000 FS","A1010,ENG0000","SUB-HRSG-100 FS,ITP1750 FS,ITP2390 FS","SUB-HRSG-100,ITP1750,ITP2390",135,166,135,166,31,38,31,38,20,,"CCGT D1_Integrated Programme Schedule;M&E;Engineering;CLP Deliverables",2,3,0.0000005728,0.0205493388,0.0004069176,0,1.0,0.0000812387,0.0136986301,0.0092307692,0.0008645833,0.0527415144,0.0012870013,0.0,1.0,0.0
1.3.3.1-41,ENG1760,"Engineering complete - (10HAD50) HRSG IP Steam",7112,"CCGTD1_IPS",TT_FinMile,"58311",-,-,-,100,TK_Complete,01/03/2018,22/01/2018,01/03/2018,22/01/2018,"A1010 FS,ENG0000 FS","A1010,ENG0000","ITP1760 FS,SUB-HRSG-100 FS","ITP1760,SUB-HRSG-100",135,166,135,166,31,38,31,38,20,,"CCGT D1_Integrated Programme Schedule;M&E;Engineering;CLP Deliverables",2,2,0.0000006142,0.02034588,0.0004069176,0,1.0,0.0000812387,0.0136986301,0.0061538462,0.0009270833,0.0522193211,0.0012870013,0.0,1.0,0.0
1.3.3.1-42,ENG1770,"Engineering complete - (10HAD80) HRSG LP Steam",7112,"CCGTD1_IPS",TT_FinMile,"58311",-,-,-,100,TK_Complete,01/03/2018,22/01/2018,01/03/2018,22/01/2018,"A1010 FS,ENG0000 FS","A1010,ENG0000","ITP1770 FS,SUB-HRSG-100 FS","ITP1770,SUB-HRSG-100",135,166,135,166,31,38,31,38,20,,"CCGT D1_Integrated Programme Schedule;M&E;Engineering;CLP Deliverables",2,2,0.0000006142,0.02034588,0.0004069176,0,1.0,0.0000812387,0.0136986301,0.0061538462,0.0009270833,0.0522193211,0.0012870013,0.0,1.0,0.0
1.3.3.1-43,ENG1780,"Engineering complete - (10HAA) HRSG Condensate Preheating System",7112,"CCGTD1_IPS",TT_FinMile,"58311",-,-,-,100,TK_Complete,01/03/2018,22/01/2018,01/03/2018,22/01/2018,"A1010 FS,ENG0000 FS","A1010,ENG0000","SUB-HRSG-100 FS","SUB-HRSG-100",135,166,135,166,31,38,31,38,20,,"CCGT D1_Integrated Programme Schedule;M&E;Engineering;CLP Deliverables",2,1,0.0000005314,0.0201424212,0.0004069176,0,1.0,0.0000812387,0.0136986301,0.0030769231,0.0008020833,0.0516971279,0.0012870013,0.0,1.0,0.0
1.3.3.1-44,ENG1790,"Engineering complete - (10HBK) HRSG Exhaust Gas System",7112,"CCGTD1_IPS",TT_FinMile,"58311",-,-,-,100,TK_Complete,01/03/2018,05/02/2018,01/03/2018,05/02/2018,"A1010 FS,ENG0000 FS","A1010,ENG0000","MS1790 FS,ITP1790 FS,SUB-HRSG-100 FS","MS1790,ITP1790,SUB-HRSG-100",135,168,135,168,31,39,31,39,20,,"CCGT D1_Integrated Programme Schedule;M&E;Engineering;CLP Deliverables",2,3,0.000000697,0.0205493388,0.0004069176,0,1.0,0.0000812387,0.0136986301,0.0092307692,0.0010520833,0.0527415144,0.0012870013,0.0,1.0,0.0
1.3.3.1-45,ENG1800,"Engineering complete - (00LBG) Auxiliary Steam System Common Area",7112,"CCGTD1_IPS",TT_FinMile,"58311",-,-,-,100,TK_Complete,02/12/2019,31/10/2017,02/12/2019,31/10/2017,"A1010 FS,ENG0000 FS","A1010,ENG0000","SUB-BOP-160 FS,00SCA110 FS","SUB-BOP-160,00SCA110",226,154,226,154,52,36,52,36,84,,"CCGT D1_Integrated Programme Schedule;M&E;Engineering;CLP Deliverables",2,2,0.0000002788,0.0671414039,0.0004069176,0,1.0,0.0000812387,0.0136986301,0.0061538462,0.0004209184,0.1723237598,0.0012870013,0.0,1.0,0.0
1.3.3.1-46,ENG1810,"Engineering complete - (10GM-02) Plant Drainage System for 10U HW",7112,"CCGTD1_IPS",TT_FinMile,"58311",-,-,-,100,TK_Complete,02/12/2019,31/10/2017,02/12/2019,31/10/2017,"A1010 FS,ENG0000 FS","A1010,ENG0000","SUB-BOP-160 FS,00SCA110 FS","SUB-BOP-160,00SCA110",226,154,226,154,52,36,52,36,84,,"CCGT D1_Integrated Programme Schedule;M&E;Engineering;CLP Deliverables",2,2,0.0000002788,0.0671414039,0.0004069176,0,1.0,0.0000812387,0.0136986301,0.0061538462,0.0004209184,0.1723237598,0.0012870013,0.0,1.0,0.0
1.3.3.1-47,ENG1820,"Engineering complete - (10LBH) Start-up and Shutdown Steam System incl Drains System",7112,"CCGTD1_IPS",TT_FinMile,"58311",-,-,-,100,TK_Complete,01/03/2018,05/02/2018,01/03/2018,05/02/2018,"A1010 FS,ENG0000 FS","A1010,ENG0000","SUB-BOP-160 FS,00SCA110 FS","SUB-BOP-160,00SCA110",135,168,135,168,31,39,31,39,20,,"CCGT D1_Integrated Programme Schedule;M&E;Engineering;CLP Deliverables",2,2,0.0000002788,0.0671414039,0.0004069176,0,1.0,0.0000812387,0.0136986301,0.0061538462,0.0004209184,0.1723237598,0.0012870013,0.0,1.0,0.0
1.3.3.1-48,ENG1830,"Engineering complete - (10LCL) HRSG Drains System",7112,"CCGTD1_IPS",TT_FinMile,"58311",-,-,-,100,TK_Complete,01/03/2018,12/03/2018,01/03/2018,12/03/2018,"A1010 FS,ENG0000 FS","A1010,ENG0000","ITP1830 FS,SUB-HRSG-100 FS","ITP1830,SUB-HRSG-100",135,173,135,173,31,40,31,40,20,,"CCGT D1_Integrated Programme Schedule;M&E;Engineering;CLP Deliverables",2,2,0.0000006142,0.02034588,0.0004069176,0,1.0,0.0000812387,0.0136986301,0.0061538462,0.0009270833,0.0522193211,0.0012870013,0.0,1.0,0.0
1.3.3.1-49,ENG1840,"Engineering complete - (10LCA-02) Condensate Supply System incl. Preheater 10HAA10",7112,"CCGTD1_IPS",TT_FinMile,"58311",-,-,-,100,TK_Complete,01/03/2018,19/03/2018,01/03/2018,19/03/2018,"A1010 FS,ENG0000 FS","A1010,ENG0000","ITP1840 FS,SUB-BOP-160 FS,00SCA110 FS","ITP1840,SUB-BOP-160,00SCA110",135,174,135,174,31,40,31,40,20,,"CCGT D1_Integrated Programme Schedule;M&E;Engineering;CLP Deliverables",2,3,0.0000003617,0.0673448627,0.0004069176,0,1.0,0.0000812387,0.0136986301,0.0092307692,0.0005459184,0.172845953,0.0012870013,0.0,1.0,0.0
1.3.3.1-50,ENG1850,"Engineering complete - (10LAB) HP/IP Feedwater Supply System",7112,"CCGTD1_IPS",TT_FinMile,"58311",-,-,-,100,TK_Complete,02/12/2019,31/10/2017,02/12/2019,31/10/2017,"A1010 FS,ENG0000 FS","A1010,ENG0000","SUB-BOP-160 FS,00SCA110 FS","SUB-BOP-160,00SCA110",226,154,226,154,52,36,52,36,84,,"CCGT D1_Integrated Programme Schedule;M&E;Engineering;CLP Deliverables",2,2,0.0000002788,0.0671414039,0.0004069176,0,1.0,0.0000812387,0.0136986301,0.0061538462,0.0004209184,0.1723237598,0.0012870013,0.0,1.0,0.0
1.3.3.1-51,ENG1860,"Engineering complete - (10LAC) Feedwater Pump",7112,"CCGTD1_IPS",TT_FinMile,"58311",-,-,-,100,TK_Complete,01/03/2018,19/03/2018,01/03/2018,19/03/2018,"A1010 FS,ENG0000 FS","A1010,ENG0000","ITP1860 FS,SUB-BOP-160 FS,00SCA110 FS","ITP1860,SUB-BOP-160,00SCA110",135,174,135,174,31,40,31,40,20,,"CCGT D1_Integrated Programme Schedule;M&E;Engineering;CLP Deliverables",2,3,0.0000003617,0.0673448627,0.0004069176,0,1.0,0.0000812387,0.0136986301,0.0092307692,0.0005459184,0.172845953,0.0012870013,0.0,1.0,0.0
1.3.3.1-52,ENG1870,"Engineering complete - (10QCB) Hydrazine Dosing QC",7112,"CCGTD1_IPS",TT_FinMile,"58311",-,-,-,100,TK_Complete,02/12/2019,31/10/2017,02/12/2019,31/10/2017,"A1010 FS,ENG0000 FS","A1010,ENG0000","ITP1870 FS,SUB-BOP-160 FS,00SCA110 FS","ITP1870,SUB-BOP-160,00SCA110",226,154,226,154,52,36,52,36,84,,"CCGT D1_Integrated Programme Schedule;M&E;Engineering;CLP Deliverables",2,3,0.0000003617,0.0673448627,0.0004069176,0,1.0,0.0000812387,0.0136986301,0.0092307692,0.0005459184,0.172845953,0.0012870013,0.0,1.0,0.0
1.3.3.1-53,ENG1880,"Engineering complete - (10QCC) Trisodium Phosphate Dosing QC",7112,"CCGTD1_IPS",TT_FinMile,"58311",-,-,-,100,TK_Complete,02/12/2019,31/10/2017,02/12/2019,31/10/2017,"A1010 FS,ENG0000 FS","A1010,ENG0000","ITP1880 FS,SUB-BOP-160 FS,00SCA110 FS","ITP1880,SUB-BOP-160,00SCA110",226,154,226,154,52,36,52,36,84,,"CCGT D1_Integrated Programme Schedule;M&E;Engineering;CLP Deliverables",2,3,0.0000003617,0.0673448627,0.0004069176,0,1.0,0.0000812387,0.0136986301,0.0092307692,0.0005459184,0.172845953,0.0012870013,0.0,1.0,0.0
1.3.3.1-54,ENG1890,"Engineering complete - (10QCD) Ammonia Dosing QC",7112,"CCGTD1_IPS",TT_FinMile,"58311",-,-,-,100,TK_Complete,02/12/2019,31/10/2017,02/12/2019,31/10/2017,"A1010 FS,ENG0000 FS","A1010,ENG0000","ITP1890 FS,SUB-BOP-160 FS,00SCA110 FS","ITP1890,SUB-BOP-160,00SCA110",226,154,226,154,52,36,52,36,84,,"CCGT D1_Integrated Programme Schedule;M&E;Engineering;CLP Deliverables",2,3,0.0000003617,0.0673448627,0.0004069176,0,1.0,0.0000812387,0.0136986301,0.0092307692,0.0005459184,0.172845953,0.0012870013,0.0,1.0,0.0
1.3.3.1-55,ENG1900,"Engineering complete - (10QU) Sampling Container QC",7112,"CCGTD1_IPS",TT_FinMile,"58311",-,-,-,100,TK_Complete,01/03/2018,02/03/2018,01/03/2018,02/03/2018,"A1010 FS,ENG0000 FS","A1010,ENG0000","ITP1900 FS,SUB-BOP-160 FS,00SCA110 FS","ITP1900,SUB-BOP-160,00SCA110",135,172,135,172,31,40,31,40,20,,"CCGT D1_Integrated Programme Schedule;M&E;Engineering;CLP Deliverables",2,3,0.0000003617,0.0673448627,0.0004069176,0,1.0,0.0000812387,0.0136986301,0.0092307692,0.0005459184,0.172845953,0.0012870013,0.0,1.0,0.0
1.3.3.1-56,ENG1920,"Engineering complete - (10HSJ) Reduction Agent Supply System for SCR",7112,"CCGTD1_IPS",TT_FinMile,"58311",-,-,-,100,TK_Complete,02/12/2019,31/10/2017,02/12/2019,31/10/2017,"A1010 FS,ENG0000 FS","A1010,ENG0000","","",226,154,226,154,52,36,52,36,84,,"CCGT D1_Integrated Programme Schedule;M&E;Engineering;CLP Deliverables",2,0,0.0,0.0,0.0004069176,0,1.0,0.0000812387,0.0136986301,0.0,0.0,0.0,0.0012870013,0.0,1.0,0.0
1.3.3.1-57,ENG1930,"Engineering complete - (10EKT20) Fuel Gas Preheating System 10EKT20",7112,"CCGTD1_IPS",TT_FinMile,"58311",-,-,-,100,TK_Complete,02/12/2019,31/10/2017,02/12/2019,31/10/2017,"A1010 FS,ENG0000 FS","A1010,ENG0000","SUB-BOP-160 FS,00SCA110 FS","SUB-BOP-160,00SCA110",226,154,226,154,52,36,52,36,84,,"CCGT D1_Integrated Programme Schedule;M&E;Engineering;CLP Deliverables",2,2,0.0000002788,0.0671414039,0.0004069176,0,1.0,0.0000812387,0.0136986301,0.0061538462,0.0004209184,0.1723237598,0.0012870013,0.0,1.0,0.0
1.3.3.1-58,ENG1940,"Engineering complete - (10GHC) Demineralised Water Distribution System inside 10 UMC",7112,"CCGTD1_IPS",TT_FinMile,"58311",-,-,-,100,TK_Complete,02/12/2019,31/10/2017,02/12/2019,31/10/2017,"A1010 FS,ENG0000 FS","A1010,ENG0000","SUB-BOP-160 FS,00SCA110 FS","SUB-BOP-160,00SCA110",226,154,226,154,52,36,52,36,84,,"CCGT D1_Integrated Programme Schedule;M&E;Engineering;CLP Deliverables",2,2,0.0000002788,0.0671414039,0.0004069176,0,1.0,0.0000812387,0.0136986301,0.0061538462,0.0004209184,0.1723237598,0.0012870013,0.0,1.0,0.0
1.3.3.1-59,ENG1950,"Engineering complete - (00GHD-01) Service Water Distribution System",7112,"CCGTD1_IPS",TT_FinMile,"58311",-,-,-,100,TK_Complete,02/12/2019,31/10/2017,02/12/2019,31/10/2017,"A1010 FS,ENG0000 FS","A1010,ENG0000","SUB-BOP-160 FS,00SCA110 FS","SUB-BOP-160,00SCA110",226,154,226,154,52,36,52,36,84,,"CCGT D1_Integrated Programme Schedule;M&E;Engineering;CLP Deliverables",2,2,0.0000002788,0.0671414039,0.0004069176,0,1.0,0.0000812387,0.0136986301,0.0061538462,0.0004209184,0.1723237598,0.0012870013,0.0,1.0,0.0
1.3.3.1-60,ENG1960,"Engineering complete - (00GKB-01) Drinking Water Distribution System",7112,"CCGTD1_IPS",TT_FinMile,"58311",-,-,-,100,TK_Complete,02/12/2019,31/10/2017,02/12/2019,31/10/2017,"A1010 FS,ENG0000 FS","A1010,ENG0000","SUB-BOP-160 FS,00SCA110 FS","SUB-BOP-160,00SCA110",226,154,226,154,52,36,52,36,84,,"CCGT D1_Integrated Programme Schedule;M&E;Engineering;CLP Deliverables",2,2,0.0000002788,0.0671414039,0.0004069176,0,1.0,0.0000812387,0.0136986301,0.0061538462,0.0004209184,0.1723237598,0.0012870013,0.0,1.0,0.0
1.3.3.1-61,ENG1970,"Engineering complete - (10LBA10) HP Main Steam System",7112,"CCGTD1_IPS",TT_FinMile,"58311",-,-,-,100,TK_Complete,02/12/2019,31/10/2017,02/12/2019,31/10/2017,"A1010 FS,ENG0000 FS","A1010,ENG0000","SUB-BOP-160 FS,00SCA110 FS","SUB-BOP-160,00SCA110",226,154,226,154,52,36,52,36,84,,"CCGT D1_Integrated Programme Schedule;M&E;Engineering;CLP Deliverables",2,2,0.0000002788,0.0671414039,0.0004069176,0,1.0,0.0000812387,0.0136986301,0.0061538462,0.0004209184,0.1723237598,0.0012870013,0.0,1.0,0.0
1.3.3.1-62,ENG1980,"Engineering complete - (10LBA80) LP Main Steam System",7112,"CCGTD1_IPS",TT_FinMile,"58311",-,-,-,100,TK_Complete,02/12/2019,31/10/2017,02/12/2019,31/10/2017,"A1010 FS,ENG0000 FS","A1010,ENG0000","SUB-BOP-160 FS,00SCA110 FS","SUB-BOP-160,00SCA110",226,154,226,154,52,36,52,36,84,,"CCGT D1_Integrated Programme Schedule;M&E;Engineering;CLP Deliverables",2,2,0.0000002788,0.0671414039,0.0004069176,0,1.0,0.0000812387,0.0136986301,0.0061538462,0.0004209184,0.1723237598,0.0012870013,0.0,1.0,0.0
1.3.3.1-63,ENG1990,"Engineering complete - (10LBB) Cold and Hot Reheat System 10LBB / 10LBC",7112,"CCGTD1_IPS",TT_FinMile,"58311",-,-,-,100,TK_Complete,02/12/2019,31/10/2017,02/12/2019,31/10/2017,"A1010 FS,ENG0000 FS","A1010,ENG0000","SUB-BOP-160 FS,00SCA110 FS","SUB-BOP-160,00SCA110",226,154,226,154,52,36,52,36,84,,"CCGT D1_Integrated Programme Schedule;M&E;Engineering;CLP Deliverables",2,2,0.0000002788,0.0671414039,0.0004069176,0,1.0,0.0000812387,0.0136986301,0.0061538462,0.0004209184,0.1723237598,0.0012870013,0.0,1.0,0.0
1.3.3.1-64,ENG2000,"Engineering complete - (00LBG) Auxiliary Steam System",7112,"CCGTD1_IPS",TT_FinMile,"58311",-,-,-,100,TK_Complete,02/12/2019,31/10/2017,02/12/2019,31/10/2017,"A1010 FS,ENG0000 FS","A1010,ENG0000","ITP2000 FS,SUB-BOP-160 FS,00SCA110 FS","ITP2000,SUB-BOP-160,00SCA110",226,154,226,154,52,36,52,36,84,,"CCGT D1_Integrated Programme Schedule;M&E;Engineering;CLP Deliverables",2,3,0.0000003617,0.0673448627,0.0004069176,0,1.0,0.0000812387,0.0136986301,0.0092307692,0.0005459184,0.172845953,0.0012870013,0.0,1.0,0.0
1.3.3.1-65,ENG2010,"Engineering complete - (10MAJ) ST Evacuation System",7112,"CCGTD1_IPS",TT_FinMile,"58311",-,-,-,100,TK_Complete,01/03/2018,19/03/2018,01/03/2018,19/03/2018,"A1010 FS,ENG0000 FS","A1010,ENG0000","","",135,174,135,174,31,40,31,40,20,,"CCGT D1_Integrated Programme Schedule;M&E;Engineering;CLP Deliverables",2,0,0.0,0.0,0.0004069176,0,1.0,0.0000812387,0.0136986301,0.0,0.0,0.0,0.0012870013,0.0,1.0,0.0
1.3.3.1-66,ENG2020,"Engineering complete - (10PAH) Condenser Tube Cleaning System",7112,"CCGTD1_IPS",TT_FinMile,"58311",-,-,-,100,TK_Complete,01/03/2018,23/01/2018,01/03/2018,23/01/2018,"A1010 FS,ENG0000 FS","A1010,ENG0000","SUB-CON-100 FS,ITP2020 FS","SUB-CON-100,ITP2020",135,166,135,166,31,38,31,38,20,,"CCGT D1_Integrated Programme Schedule;M&E;Engineering;CLP Deliverables",2,2,0.0000002898,0.0022380468,0.0004069176,0,1.0,0.0000812387,0.0136986301,0.0061538462,0.0004375,0.0057441253,0.0012870013,0.0,1.0,0.0
1.3.3.1-67,ENG2030,"Engineering complete - (00BZL-01) L&SP incl BMZ 00 IN UBA 81 Area",7112,"CCGTD1_IPS",TT_FinMile,"58311",-,-,-,100,TK_Complete,02/12/2019,31/10/2017,02/12/2019,31/10/2017,"A1010 FS,ENG0000 FS","A1010,ENG0000","SUB-EIC-100 FS","SUB-EIC-100",226,154,226,154,52,36,52,36,84,,"CCGT D1_Integrated Programme Schedule;M&E;Engineering;CLP Deliverables",2,1,0.0000013854,0.0982706002,0.0004069176,0,1.0,0.0000812387,0.0136986301,0.0030769231,0.0020913462,0.2522193211,0.0012870013,0.0,1.0,0.0
1.3.3.1-68,ENG2040,"Engineering complete - (10PAB-01) Circulating Water System incl. Cooling Water Pumps",7112,"CCGTD1_IPS",TT_FinMile,"58311",-,-,-,100,TK_Complete,02/12/2019,31/10/2017,02/12/2019,31/10/2017,"A1010 FS,ENG0000 FS","A1010,ENG0000","ITP2040 FS,SUB-BOP-160 FS,00SCA110 FS","ITP2040,SUB-BOP-160,00SCA110",226,154,226,154,52,36,52,36,84,,"CCGT D1_Integrated Programme Schedule;M&E;Engineering;CLP Deliverables",2,3,0.0000003617,0.0673448627,0.0004069176,0,1.0,0.0000812387,0.0136986301,0.0092307692,0.0005459184,0.172845953,0.0012870013,0.0,1.0,0.0
1.3.3.1-69,ENG2050,"Engineering complete - (00PAA) Cooling Water Screening Plant",7112,"CCGTD1_IPS",TT_FinMile,"58311",-,-,-,100,TK_Complete,01/03/2018,02/03/2018,01/03/2018,02/03/2018,"A1010 FS,ENG0000 FS","A1010,ENG0000","ITP2050 FS,SUB-BOP-160 FS,00SCA110 FS","ITP2050,SUB-BOP-160,00SCA110",135,172,135,172,31,40,31,40,20,,"CCGT D1_Integrated Programme Schedule;M&E;Engineering;CLP Deliverables",2,3,0.0000003617,0.0673448627,0.0004069176,0,1.0,0.0000812387,0.0136986301,0.0092307692,0.0005459184,0.172845953,0.0012870013,0.0,1.0,0.0
1.3.3.1-70,ENG2060,"Engineering complete - (00PUR) Cathodic Protection System for Cooling Water Inlet",7112,"CCGTD1_IPS",TT_FinMile,"58311",-,-,-,100,TK_Complete,02/12/2019,31/10/2017,02/12/2019,31/10/2017,"A1010 FS,ENG0000 FS","A1010,ENG0000","ITP2060 FS,SUB-BOP-160 FS,00SCA110 FS","ITP2060,SUB-BOP-160,00SCA110",226,154,226,154,52,36,52,36,84,,"CCGT D1_Integrated Programme Schedule;M&E;Engineering;CLP Deliverables",2,3,0.0000003617,0.0673448627,0.0004069176,0,1.0,0.0000812387,0.0136986301,0.0092307692,0.0005459184,0.172845953,0.0012870013,0.0,1.0,0.0
1.3.3.1-71,ENG2070,"Engineering complete - (00PUN) Biocide Dosing System for Cooling Water",7112,"CCGTD1_IPS",TT_FinMile,"58311",-,-,-,100,TK_Complete,02/12/2019,31/10/2017,02/12/2019,31/10/2017,"A1010 FS,ENG0000 FS","A1010,ENG0000","SUB-BOP-160 FS,00SCA110 FS","SUB-BOP-160,00SCA110",226,154,226,154,52,36,52,36,84,,"CCGT D1_Integrated Programme Schedule;M&E;Engineering;CLP Deliverables",2,2,0.0000002788,0.0671414039,0.0004069176,0,1.0,0.0000812387,0.0136986301,0.0061538462,0.0004209184,0.1723237598,0.0012870013,0.0,1.0,0.0
1.3.3.1-72,ENG2080,"Engineering complete - (10PUR) Cathodic Protection System for Cooling Water Side of Condenser",7112,"CCGTD1_IPS",TT_FinMile,"58311",-,-,-,100,TK_Complete,02/12/2019,31/10/2017,02/12/2019,31/10/2017,"A1010 FS,ENG0000 FS","A1010,ENG0000","ITP2080 FS,SUB-BOP-160 FS,00SCA110 FS","ITP2080,SUB-BOP-160,00SCA110",226,154,226,154,52,36,52,36,84,,"CCGT D1_Integrated Programme Schedule;M&E;Engineering;CLP Deliverables",2,3,0.0000003617,0.0673448627,0.0004069176,0,1.0,0.0000812387,0.0136986301,0.0092307692,0.0005459184,0.172845953,0.0012870013,0.0,1.0,0.0
1.3.3.1-73,ENG2100,"Engineering complete - (00GM-02) Plant Drainage System  for Surface Water",7112,"CCGTD1_IPS",TT_FinMile,"58311",-,-,-,100,TK_Complete,02/12/2019,31/10/2017,02/12/2019,31/10/2017,"A1010 FS,ENG0000 FS","A1010,ENG0000","SUB-BOP-160 FS,00SCA110 FS","SUB-BOP-160,00SCA110",226,154,226,154,52,36,52,36,84,,"CCGT D1_Integrated Programme Schedule;M&E;Engineering;CLP Deliverables",2,2,0.0000002788,0.0671414039,0.0004069176,0,1.0,0.0000812387,0.0136986301,0.0061538462,0.0004209184,0.1723237598,0.0012870013,0.0,1.0,0.0
1.3.3.1-74,ENG2110,"Engineering complete - (00GHC-02) Demineralised Water Supply System up to UMC",7112,"CCGTD1_IPS",TT_FinMile,"58311",-,-,-,100,TK_Complete,02/12/2019,31/10/2017,02/12/2019,31/10/2017,"A1010 FS,ENG0000 FS","A1010,ENG0000","SUB-BOP-160 FS,00SCA110 FS","SUB-BOP-160,00SCA110",226,154,226,154,52,36,52,36,84,,"CCGT D1_Integrated Programme Schedule;M&E;Engineering;CLP Deliverables",2,2,0.0000002788,0.0671414039,0.0004069176,0,1.0,0.0000812387,0.0136986301,0.0061538462,0.0004209184,0.1723237598,0.0012870013,0.0,1.0,0.0
1.3.3.1-75,ENG2130,"Engineering complete - (00MBU) NOX Water Forwarding System incl. Supply Lines to GT Skid",7112,"CCGTD1_IPS",TT_FinMile,"58311",-,-,-,100,TK_Complete,01/03/2018,16/03/2018,01/03/2018,16/03/2018,"A1010 FS,ENG0000 FS","A1010,ENG0000","ITP2130 FS,SUB-BOP-160 FS,00SCA110 FS","ITP2130,SUB-BOP-160,00SCA110",135,174,135,174,31,40,31,40,20,,"CCGT D1_Integrated Programme Schedule;M&E;Engineering;CLP Deliverables",2,3,0.0000003617,0.0673448627,0.0004069176,0,1.0,0.0000812387,0.0136986301,0.0092307692,0.0005459184,0.172845953,0.0012870013,0.0,1.0,0.0
1.3.3.1-76,ENG2140,"Engineering complete - (00GHC-01) Demineralised Water Storage System",7112,"CCGTD1_IPS",TT_FinMile,"58311",-,-,-,100,TK_Complete,02/12/2019,31/10/2017,02/12/2019,31/10/2017,"A1010 FS,ENG0000 FS","A1010,ENG0000","SUB-BOP-160 FS,00SCA110 FS","SUB-BOP-160,00SCA110",226,154,226,154,52,36,52,36,85,,"CCGT D1_Integrated Programme Schedule;M&E;Engineering;CLP Deliverables",2,2,0.0000002788,0.0671414039,0.0004069176,0,1.0,0.0000812387,0.0136986301,0.0061538462,0.0004209184,0.1723237598,0.0012870013,0.0,1.0,0.0
1.3.3.1-77,ENG2150,"Engineering complete - (00GA) Raw Water Supply and Storage Tank 00GAC/GAD",7112,"CCGTD1_IPS",TT_FinMile,"58311",-,-,-,100,TK_Complete,02/12/2019,31/10/2017,02/12/2019,31/10/2017,"A1010 FS,ENG0000 FS","A1010,ENG0000","SUB-BOP-160 FS,00SCA110 FS","SUB-BOP-160,00SCA110",226,154,226,154,52,36,52,36,85,,"CCGT D1_Integrated Programme Schedule;M&E;Engineering;CLP Deliverables",2,2,0.0000002788,0.0671414039,0.0004069176,0,1.0,0.0000812387,0.0136986301,0.0061538462,0.0004209184,0.1723237598,0.0012870013,0.0,1.0,0.0
1.3.3.1-78,ENG2160,"Engineering complete - (00BZL-03) L&SP incl. BMZ 00 IN USG Area",7112,"CCGTD1_IPS",TT_FinMile,"58311",-,-,-,100,TK_Complete,02/12/2019,31/10/2017,02/12/2019,31/10/2017,"A1010 FS,ENG0000 FS","A1010,ENG0000","SUB-EIC-100 FS","SUB-EIC-100",226,154,226,154,52,36,52,36,85,,"CCGT D1_Integrated Programme Schedule;M&E;Engineering;CLP Deliverables",2,1,0.0000013854,0.0982706002,0.0004069176,0,1.0,0.0000812387,0.0136986301,0.0030769231,0.0020913462,0.2522193211,0.0012870013,0.0,1.0,0.0
1.3.3.1-79,ENG2170,"Engineering complete - (00SGA-01) Fire Pump Station, Ring Main, Outdoors Hydrants",7112,"CCGTD1_IPS",TT_FinMile,"58311",-,-,-,100,TK_Complete,01/03/2018,19/03/2018,01/03/2018,19/03/2018,"A1010 FS,ENG0000 FS","A1010,ENG0000","SUB-BOP-160 FS,00SCA110 FS","SUB-BOP-160,00SCA110",135,174,135,174,31,40,31,40,20,,"CCGT D1_Integrated Programme Schedule;M&E;Engineering;CLP Deliverables",2,2,0.0000002788,0.0671414039,0.0004069176,0,1.0,0.0000812387,0.0136986301,0.0061538462,0.0004209184,0.1723237598,0.0012870013,0.0,1.0,0.0
1.3.3.1-80,ENG2180,"Engineering complete - (00STG) Laboratory Container STG",7112,"CCGTD1_IPS",TT_FinMile,"58311",-,-,-,100,TK_Complete,01/03/2018,12/03/2018,01/03/2018,12/03/2018,"A1010 FS,ENG0000 FS","A1010,ENG0000","ITP2180 FS,SUB-BOP-160 FS,00SCA110 FS","ITP2180,SUB-BOP-160,00SCA110",135,173,135,173,31,40,31,40,20,,"CCGT D1_Integrated Programme Schedule;M&E;Engineering;CLP Deliverables",2,3,0.0000003617,0.0673448627,0.0004069176,0,1.0,0.0000812387,0.0136986301,0.0092307692,0.0005459184,0.172845953,0.0012870013,0.0,1.0,0.0
1.3.3.1-81,ENG2190,"Engineering complete - (00EK) Fuel Gas Conditioning System EKD (incl. Fuel Gas Supply for QHA)",7112,"CCGTD1_IPS",TT_FinMile,"58311",-,-,-,100,TK_Complete,02/12/2019,31/10/2017,02/12/2019,31/10/2017,"A1010 FS,ENG0000 FS","A1010,ENG0000","SUB-BOP-160 FS,00SCA110 FS","SUB-BOP-160,00SCA110",226,154,226,154,52,36,52,36,85,,"CCGT D1_Integrated Programme Schedule;M&E;Engineering;CLP Deliverables",2,2,0.0000002788,0.0671414039,0.0004069176,0,1.0,0.0000812387,0.0136986301,0.0061538462,0.0004209184,0.1723237598,0.0012870013,0.0,1.0,0.0
1.3.3.1-82,ENG2200,"Engineering complete - (10SGC-02) FF Spray Deluge Systems for 00UEH/UEJ/UEK Area",7112,"CCGTD1_IPS",TT_FinMile,"58311",-,-,-,100,TK_Complete,02/12/2019,31/10/2017,02/12/2019,31/10/2017,"A1010 FS,ENG0000 FS","A1010,ENG0000","ITP2200 FS,SUB-BOP-160 FS,00SCA110 FS","ITP2200,SUB-BOP-160,00SCA110",226,154,226,154,52,36,52,36,85,,"CCGT D1_Integrated Programme Schedule;M&E;Engineering;CLP Deliverables",2,3,0.0000003617,0.0673448627,0.0004069176,0,1.0,0.0000812387,0.0136986301,0.0092307692,0.0005459184,0.172845953,0.0012870013,0.0,1.0,0.0
1.3.3.1-83,ENG2210,"Engineering complete - (00SCB) Comprssed Air Distribution System Overall Plant",7112,"CCGTD1_IPS",TT_FinMile,"58311",-,-,-,100,TK_Complete,02/12/2019,31/10/2017,02/12/2019,31/10/2017,"A1010 FS,ENG0000 FS","A1010,ENG0000","SUB-BOP-160 FS,00SCA110 FS","SUB-BOP-160,00SCA110",226,154,226,154,52,36,52,36,85,,"CCGT D1_Integrated Programme Schedule;M&E;Engineering;CLP Deliverables",2,2,0.0000002788,0.0671414039,0.0004069176,0,1.0,0.0000812387,0.0136986301,0.0061538462,0.0004209184,0.1723237598,0.0012870013,0.0,1.0,0.0
1.3.3.1-84,ENG2220,"Engineering complete - (00EG-01) Fuel Oil Forwarding Station and Storage Tank",7112,"CCGTD1_IPS",TT_FinMile,"58311",-,-,-,100,TK_Complete,02/12/2019,31/10/2017,02/12/2019,31/10/2017,"A1010 FS,ENG0000 FS","A1010,ENG0000","ITP2220 FS,SUB-BOP-160 FS,00SCA110 FS","ITP2220,SUB-BOP-160,00SCA110",226,154,226,154,52,36,52,36,85,,"CCGT D1_Integrated Programme Schedule;M&E;Engineering;CLP Deliverables",2,3,0.0000003617,0.0673448627,0.0004069176,0,1.0,0.0000812387,0.0136986301,0.0092307692,0.0005459184,0.172845953,0.0012870013,0.0,1.0,0.0
1.3.3.1-85,ENG2230,"Engineering complete - (00EG-02) Fuel Oil Forwarding System incl. Supply Lines up to Fuel Oil",7112,"CCGTD1_IPS",TT_FinMile,"58311",-,-,-,100,TK_Complete,02/12/2019,31/10/2017,02/12/2019,31/10/2017,"A1010 FS,ENG0000 FS","A1010,ENG0000","ITP2230 FS,SUB-BOP-160 FS,00SCA110 FS","ITP2230,SUB-BOP-160,00SCA110",226,154,226,154,52,36,52,36,85,,"CCGT D1_Integrated Programme Schedule;M&E;Engineering;CLP Deliverables",2,3,0.0000003617,0.0673448627,0.0004069176,0,1.0,0.0000812387,0.0136986301,0.0092307692,0.0005459184,0.172845953,0.0012870013,0.0,1.0,0.0
1.3.3.1-86,ENG2240,"Engineering complete - (00BZL-02) L&SP in UCA",7112,"CCGTD1_IPS",TT_FinMile,"58311",-,-,-,100,TK_Complete,02/12/2019,31/10/2017,02/12/2019,31/10/2017,"A1010 FS,ENG0000 FS","A1010,ENG0000","SUB-EIC-100 FS","SUB-EIC-100",226,154,226,154,52,36,52,36,85,,"CCGT D1_Integrated Programme Schedule;M&E;Engineering;CLP Deliverables",2,1,0.0000013854,0.0982706002,0.0004069176,0,1.0,0.0000812387,0.0136986301,0.0030769231,0.0020913462,0.2522193211,0.0012870013,0.0,1.0,0.0
1.3.3.1-87,ENG2250,"Engineering complete - (00CR) Control Room Equipment",7112,"CCGTD1_IPS",TT_FinMile,"58311",-,-,-,100,TK_Complete,02/12/2019,31/10/2017,02/12/2019,31/10/2017,"A1010 FS,ENG0000 FS","A1010,ENG0000","SUB-EIC-100 FS","SUB-EIC-100",226,154,226,154,52,36,52,36,85,,"CCGT D1_Integrated Programme Schedule;M&E;Engineering;CLP Deliverables",2,1,0.0000013854,0.0982706002,0.0004069176,0,1.0,0.0000812387,0.0136986301,0.0030769231,0.0020913462,0.2522193211,0.0012870013,0.0,1.0,0.0
1.3.3.1-88,ENG2270,"Engineering complete - (00CY) Communication System in 00UCA",7112,"CCGTD1_IPS",TT_FinMile,"58311",-,-,-,100,TK_Complete,02/12/2019,31/10/2017,02/12/2019,31/10/2017,"A1010 FS,ENG0000 FS","A1010,ENG0000","SUB-EIC-100 FS","SUB-EIC-100",226,154,226,154,52,36,52,36,85,,"CCGT D1_Integrated Programme Schedule;M&E;Engineering;CLP Deliverables",2,1,0.0000013854,0.0982706002,0.0004069176,0,1.0,0.0000812387,0.0136986301,0.0030769231,0.0020913462,0.2522193211,0.0012870013,0.0,1.0,0.0
1.3.3.1-89,ENG2280,"Engineering complete - (10AC) HV Swictchgear Including Cable Connection and Lighting and Small Power",7112,"CCGTD1_IPS",TT_FinMile,"58311",-,-,-,100,TK_Complete,02/12/2019,31/10/2017,02/12/2019,31/10/2017,"A1010 FS,ENG0000 FS","A1010,ENG0000","SUB-EIC-100 FS","SUB-EIC-100",226,154,226,154,52,36,52,36,85,,"CCGT D1_Integrated Programme Schedule;M&E;Engineering;CLP Deliverables",2,1,0.0000013854,0.0982706002,0.0004069176,0,1.0,0.0000812387,0.0136986301,0.0030769231,0.0020913462,0.2522193211,0.0012870013,0.0,1.0,0.0
1.3.3.1-90,ENG2290,"Engineering complete - (10CYE) Fire Detection System for GT Noise Enlcosure MPB",7112,"CCGTD1_IPS",TT_FinMile,"58311",-,-,-,100,TK_Complete,02/12/2019,31/10/2017,02/12/2019,31/10/2017,"A1010 FS,ENG0000 FS","A1010,ENG0000","SUB-BOP-160 FS,00SCA110 FS","SUB-BOP-160,00SCA110",226,154,226,154,52,36,52,36,85,,"CCGT D1_Integrated Programme Schedule;M&E;Engineering;CLP Deliverables",2,2,0.0000002788,0.0671414039,0.0004069176,0,1.0,0.0000812387,0.0136986301,0.0061538462,0.0004209184,0.1723237598,0.0012870013,0.0,1.0,0.0
1.3.3.1-91,ENG2300,"Engineering complete - (00PUS) Electro Chlorination System",7112,"CCGTD1_IPS",TT_FinMile,"58311",-,-,-,100,TK_Complete,02/12/2019,31/10/2017,02/12/2019,31/10/2017,"A1010 FS,ENG0000 FS","A1010,ENG0000","SUB-BOP-160 FS,00SCA110 FS","SUB-BOP-160,00SCA110",226,154,226,154,52,36,52,36,85,,"CCGT D1_Integrated Programme Schedule;M&E;Engineering;CLP Deliverables",2,2,0.0000002788,0.0671414039,0.0004069176,0,1.0,0.0000812387,0.0136986301,0.0061538462,0.0004209184,0.1723237598,0.0012870013,0.0,1.0,0.0
1.3.3.1-92,ENG0000,"Engineering complete - Start delivering engineering systems",7112,"CCGTD1_IPS",TT_FinMile,"58311",-,-,-,100,TK_Complete,01/03/2018,31/10/2017,01/03/2018,31/10/2017,"A1010 FS","A1010","ITP1750 FS,ITP2390 FS,ENG1000 FS,ENG1010 FS,ENG1020 FS,ENG1030 FS,ENG1040 FS,ENG1060 FS,ENG1070 FS,ENG1080 FS,ENG1090 FS,ENG1100 FS,ENG1120 FS,ENG1170 FS,ENG1180 FS,ENG1190 FS,ENG1200 FS,ENG1210 FS,ENG1220 FS,ENG1250 FS,ENG1280 FS,ENG1290 FS,ENG1300 FS,ENG1330 FS,ENG1340 FS,ENG1350 FS,ENG1390 FS,ENG1600 FS,ENG1610 FS,ENG1620 FS,ENG1630 FS,ENG1710 FS,ENG1720 FS,ENG1750 FS,ENG1760 FS,ENG1770 FS,ENG1780 FS,ENG1790 FS,ENG1800 FS,ENG1810 FS,ENG1820 FS,ENG1830 FS,ENG1840 FS,ENG1850 FS,ENG1860 FS,ENG1870 FS,ENG1880 FS,ENG1890 FS,ENG1900 FS,ENG1920 FS,ENG1930 FS,ENG1940 FS,ENG1950 FS,ENG1960 FS,ENG1970 FS,ENG1980 FS,ENG1990 FS,ENG2000 FS,ENG2010 FS,ENG2020 FS,ENG2030 FS,ENG2040 FS,ENG2050 FS,ENG2060 FS,ENG2070 FS,ENG2080 FS,ENG2100 FS,ENG2110 FS,ENG2130 FS,ENG2140 FS,ENG2150 FS,ENG2160 FS,ENG2170 FS,ENG2180 FS,ENG2190 FS,ENG2200 FS,ENG2210 FS,ENG2220 FS,ENG2230 FS,ENG2240 FS,ENG2250 FS,ENG2270 FS,ENG2280 FS,ENG2290 FS,ENG2300 FS,ENG2310 FS,ENG2320 FS,ENG2330 FS,ENG2340 FS,ENG2350 FS,ENG2360 FS,ENG2370 FS,ENG2380 FS","ITP1750,ITP2390,ENG1000,ENG1010,ENG1020,ENG1030,ENG1040,ENG1060,ENG1070,ENG1080,ENG1090,ENG1100,ENG1120,ENG1170,ENG1180,ENG1190,ENG1200,ENG1210,ENG1220,ENG1250,ENG1280,ENG1290,ENG1300,ENG1330,ENG1340,ENG1350,ENG1390,ENG1600,ENG1610,ENG1620,ENG1630,ENG1710,ENG1720,ENG1750,ENG1760,ENG1770,ENG1780,ENG1790,ENG1800,ENG1810,ENG1820,ENG1830,ENG1840,ENG1850,ENG1860,ENG1870,ENG1880,ENG1890,ENG1900,ENG1920,ENG1930,ENG1940,ENG1950,ENG1960,ENG1970,ENG1980,ENG1990,ENG2000,ENG2010,ENG2020,ENG2030,ENG2040,ENG2050,ENG2060,ENG2070,ENG2080,ENG2100,ENG2110,ENG2130,ENG2140,ENG2150,ENG2160,ENG2170,ENG2180,ENG2190,ENG2200,ENG2210,ENG2220,ENG2230,ENG2240,ENG2250,ENG2270,ENG2280,ENG2290,ENG2300,ENG2310,ENG2320,ENG2330,ENG2340,ENG2350,ENG2360,ENG2370,ENG2380",135,154,135,154,31,36,31,36,20,,"CCGT D1_Integrated Programme Schedule;M&E;Engineering;CLP Deliverables",1,93,0.0000000414,0.2028484232,0.0002034588,0,1.0,0.0000812387,0.0068493151,0.2861538462,0.0000625,0.5206266319,0.0006435006,0.0,1.0,0.0
1.3.3.2,58310,"SEL / KS Deliverables",7112,"CCGTD1_IPS",WBS,"58309",,,,100,Complete,01/02/2018,01/11/2017,16/03/2018,26/02/2018,,,,,131,154,137,171,30,36,32,40,,,"CCGT D1_Integrated Programme Schedule;M&E;Engineering"
1.3.3.2-1,MWS01.1000,"Submission and Approval - Purchase Orders to Sub-contractors of Crane Barges (e.g. for lifts greater than 300t)",7112,"CCGTD1_IPS",TT_Task,"58310",-,-,-,100,TK_Complete,01/03/2018,30/01/2018,16/03/2018,14/02/2018,"A1010 FS","A1010","MWS03.1010 FS,SC1010-1 FS","MWS03.1010,SC1010-1",135,167,137,169,31,39,32,39,19,,"CCGT D1_Integrated Programme Schedule;M&E;Engineering;SEL / KS Deliverables",1,2,0.0000000414,0.0022380468,0.0002034588,15,1.0,0.0000819596,0.0068493151,0.0061538462,0.0000625,0.0057441253,0.0006435006,0.033632287,1.0,0.0002953818
1.3.3.2-2,MWS01.1010,"Submission and Approval - Purchase Orders to Sub-contractors of Land based cranes (e.g. for large lifts between 50-300t)",7112,"CCGTD1_IPS",TT_Task,"58310",-,-,-,100,TK_Complete,01/03/2018,30/01/2018,16/03/2018,09/02/2018,"A1010 FS","A1010","SC1010-2 FS,MWS03.1020 FS","SC1010-2,MWS03.1020",135,167,137,169,31,39,32,39,19,,"CCGT D1_Integrated Programme Schedule;M&E;Engineering;SEL / KS Deliverables",1,2,0.0000000414,0.018311292,0.0002034588,15,1.0,0.0000819596,0.0068493151,0.0061538462,0.0000625,0.046997389,0.0006435006,0.033632287,1.0,0.0002953818
1.3.3.2-3,MWS02.1010,"Submission and Approval - Insurance certificates and policy documentation",7112,"CCGTD1_IPS",TT_Task,"58310",-,-,-,100,TK_Complete,01/02/2018,01/11/2017,21/02/2018,17/11/2017,"A1010 FS","A1010","SC1020-1 FS","SC1020-1",131,154,134,157,30,36,31,36,18,,"CCGT D1_Integrated Programme Schedule;M&E;Engineering;SEL / KS Deliverables",1,1,0.0000000414,0.018311292,0.0002034588,20,1.0,0.0000821999,0.0068493151,0.0030769231,0.0000625,0.046997389,0.0006435006,0.0448430493,1.0,0.0003938424
1.3.3.2-4,MWS02.1020,"Submission and Approval - Construction Execution Plan",7112,"CCGTD1_IPS",TT_Task,"58310",-,-,-,100,TK_Complete,01/02/2018,17/11/2017,21/02/2018,26/02/2018,"A1010 FS","A1010","","",131,157,134,171,30,36,31,40,18,,"CCGT D1_Integrated Programme Schedule;M&E;Engineering;SEL / KS Deliverables",1,0,0.0,0.0,0.0002034588,20,0.0,0.0000821999,0.0068493151,0.0,0.0,0.0,0.0006435006,0.0448430493,0.0,0.0003938424
1.3.3.2-5,MWS02.1030,"Submission and Approval - SHHE Plans",7112,"CCGTD1_IPS",TT_Task,"58310",-,-,-,100,TK_Complete,01/02/2018,17/11/2017,21/02/2018,26/02/2018,"A1010 FS","A1010","","",131,157,134,171,30,36,31,40,18,,"CCGT D1_Integrated Programme Schedule;M&E;Engineering;SEL / KS Deliverables",1,0,0.0,0.0,0.0002034588,20,0.0,0.0000821999,0.0068493151,0.0,0.0,0.0,0.0006435006,0.0448430493,0.0,0.0003938424
1.3.3.2-6,MWS02.1040,"Submission and Approval - Material Management Plan",7112,"CCGTD1_IPS",TT_Task,"58310",-,-,-,100,TK_Complete,01/02/2018,17/12/2017,21/02/2018,17/12/2017,"A1010 FS","A1010","","",131,161,134,161,30,37,31,37,18,,"CCGT D1_Integrated Programme Schedule;M&E;Engineering;SEL / KS Deliverables",1,0,0.0,0.0,0.0002034588,20,1.0,0.0000821999,0.0068493151,0.0,0.0,0.0,0.0006435006,0.0448430493,1.0,0.0003938424
1.3.3.2-7,MWS02.1050,"Submission and Approval - Project Quality Plan",7112,"CCGTD1_IPS",TT_Task,"58310",-,-,-,100,TK_Complete,01/02/2018,08/01/2018,21/02/2018,08/01/2018,"A1010 SS","A1010","","",131,164,134,164,30,38,31,38,18,,"CCGT D1_Integrated Programme Schedule;M&E;Engineering;SEL / KS Deliverables",1,0,0.0,0.0,0.0002034588,20,1.0,0.0000821999,0.0068493151,0.0,0.0,0.0,0.0006435006,0.0448430493,1.0,0.0003938424
1.3.3.2-8,MWS02.1060,"Submission and Approval - Quality Assurance System Manual",7112,"CCGTD1_IPS",TT_Task,"58310",-,-,-,100,TK_Complete,01/02/2018,08/01/2018,21/02/2018,08/01/2018,"A1010 FS","A1010","","",131,164,134,164,30,38,31,38,18,,"CCGT D1_Integrated Programme Schedule;M&E;Engineering;SEL / KS Deliverables",1,0,0.0,0.0,0.0002034588,20,1.0,0.0000821999,0.0068493151,0.0,0.0,0.0,0.0006435006,0.0448430493,1.0,0.0003938424
1.3.4,58303,"Milestones",7112,"CCGTD1_IPS",WBS,"58236",,,,100,Complete,30/11/2017,22/09/2017,24/06/2020,,,,,,122,149,256,,28,34,59,,,,"CCGT D1_Integrated Programme Schedule;M&E"
1.3.4.1,58308,"CANCELLED TOP's",7112,"CCGTD1_IPS",WBS,"58303",,,,,NotStart,,,,,,,,,,,,,,,,,,,"CCGT D1_Integrated Programme Schedule;M&E;Milestones"
1.3.4.2,58307,"Added TOP's",7112,"CCGTD1_IPS",WBS,"58303",,,,100,Complete,31/07/2019,04/07/2019,14/04/2020,27/03/2020,,,,,209,241,245,280,48,56,57,65,,,"CCGT D1_Integrated Programme Schedule;M&E;Milestones"
1.3.4.2-1,TOP2340,"(TOP-10CJ-ST) Automation Panel in Function Area Steam Turbine",7112,"CCGTD1_IPS",TT_FinMile,"58307",-,-,-,100,TK_Complete,05/09/2019,15/08/2019,05/09/2019,15/08/2019,"10CP-ST-70 FS","10CP-ST-70","SC1300 FS","SC1300",214,247,214,247,49,57,49,57,75,,"CCGT D1_Integrated Programme Schedule;M&E;Milestones;Added TOP's",1,1,0.0000001288,0.0002034588,0.0018311292,0,1.0,0.0000812387,0.0068493151,0.0030769231,0.0001944444,0.0005221932,0.0057915058,0.0,1.0,0.0
1.3.4.2-2,TOP2390,"(TOP-10CJ-GT) Automation Panel in Function Area Gas Turbine",7112,"CCGTD1_IPS",TT_FinMile,"58307",-,-,-,100,TK_Complete,31/08/2019,06/08/2019,31/08/2019,06/08/2019,"10CP-GT70 FS","10CP-GT70","SC1300 FS","SC1300",213,246,213,246,49,57,49,57,71,,"CCGT D1_Integrated Programme Schedule;M&E;Milestones;Added TOP's",1,1,0.0000002898,0.0002034588,0.0067141404,0,1.0,0.0000812387,0.0068493151,0.0030769231,0.0004375,0.0005221932,0.0212355212,0.0,1.0,0.0
1.3.4.2-3,TOP2400,"(TOP-10BA-03) Generator Circuit Breaker",7112,"CCGTD1_IPS",TT_FinMile,"58307",-,-,-,100,TK_Complete,17/09/2019,01/08/2019,17/09/2019,01/08/2019,"10BAC40 FS","10BAC40","SC1300 FS","SC1300",215,245,215,245,50,57,50,57,77,,"CCGT D1_Integrated Programme Schedule;M&E;Milestones;Added TOP's",1,1,0.000000383,0.0002034588,0.0075279756,0,1.0,0.0000812387,0.0068493151,0.0030769231,0.000578125,0.0005221932,0.0238095238,0.0,1.0,0.0
1.3.4.2-4,TOP2410,"(TOP-10BFT-03) LV-Transformer BFT03",7112,"CCGTD1_IPS",TT_FinMile,"58307",-,-,-,100,TK_Complete,06/09/2019,28/08/2019,06/09/2019,28/08/2019,"10BHT-80 FS","10BHT-80","SC1300 FS,CCOM1300 FS","SC1300,CCOM1300",214,249,214,249,50,58,50,58,75,,"CCGT D1_Integrated Programme Schedule;M&E;Milestones;Added TOP's",1,2,0.0000040679,0.0008138352,0.0065106816,0,1.0,0.0000812387,0.0068493151,0.0061538462,0.006140625,0.0020887728,0.0205920206,0.0,1.0,0.0
1.3.4.2-5,TOP2420,"(TOP-10BFT-02) LV-Transformer BFT02",7112,"CCGTD1_IPS",TT_FinMile,"58307",-,-,-,100,TK_Complete,06/09/2019,29/08/2019,06/09/2019,29/08/2019,"10BHT-80 FS","10BHT-80","SC1300 FS,CCOM1320 FS","SC1300,CCOM1320",214,249,214,249,50,58,50,58,76,,"CCGT D1_Integrated Programme Schedule;M&E;Milestones;Added TOP's",1,2,0.0000020805,0.0008138352,0.0065106816,0,1.0,0.0000812387,0.0068493151,0.0061538462,0.003140625,0.0020887728,0.0205920206,0.0,1.0,0.0
1.3.4.2-6,TOP2430,"(TOP-10CJ-BOP) Automation Panel in Function Area BOP",7112,"CCGTD1_IPS",TT_FinMile,"58307",-,-,-,100,TK_Complete,16/09/2019,19/08/2019,16/09/2019,19/08/2019,"10CP-AA70 FS","10CP-AA70","SC1300 FS","SC1300",215,248,215,248,50,57,50,57,76,,"CCGT D1_Integrated Programme Schedule;M&E;Milestones;Added TOP's",1,1,0.0000002898,0.0002034588,0.007121058,0,1.0,0.0000812387,0.0068493151,0.0030769231,0.0004375,0.0005221932,0.0225225225,0.0,1.0,0.0
1.3.4.2-7,TOP2440,"(TOP-10CJ-HR) Automation Panel in Function Area HRSG",7112,"CCGTD1_IPS",TT_FinMile,"58307",-,-,-,100,TK_Complete,04/09/2019,03/09/2019,04/09/2019,03/09/2019,"10CP-HR70 FS","10CP-HR70","SC1300 FS","SC1300",214,250,214,250,49,58,49,58,75,,"CCGT D1_Integrated Programme Schedule;M&E;Milestones;Added TOP's",1,1,0.0000002484,0.0002034588,0.0018311292,0,1.0,0.0000812387,0.0068493151,0.0030769231,0.000375,0.0005221932,0.0057915058,0.0,1.0,0.0
1.3.4.2-8,TOP2450,"(TOP-10CP-BOP-01) CPC Interface Panels ET200 in Function Area BOP (UBA area)",7112,"CCGTD1_IPS",TT_FinMile,"58307",-,-,-,100,TK_Complete,10/09/2019,17/08/2019,10/09/2019,17/08/2019,"10CP-ST-70 FS,10CP-WS70 FS","10CP-ST-70,10CP-WS70","SC1300 FS,CCOM1150 FS","SC1300,CCOM1150",214,248,214,248,50,57,50,57,76,,"CCGT D1_Integrated Programme Schedule;M&E;Milestones;Added TOP's",2,2,0.0000103721,0.0014242116,0.0083418108,0,1.0,0.0000812387,0.0136986301,0.0061538462,0.0156569444,0.0036553525,0.0263835264,0.0,1.0,0.0
1.3.4.2-9,TOP2460,"(TOP-10CP-BOP-02) CPD Interface Panels ET200 in Function Area BOP",7112,"CCGTD1_IPS",TT_FinMile,"58307",-,-,-,100,TK_Complete,10/09/2019,19/08/2019,10/09/2019,19/08/2019,"10CP-WS70 FS","10CP-WS70","SC1300 FS","SC1300",214,248,214,248,50,57,50,57,76,,"CCGT D1_Integrated Programme Schedule;M&E;Milestones;Added TOP's",1,1,0.000000058,0.0002034588,0.007121058,0,1.0,0.0000812387,0.0068493151,0.0030769231,0.0000875,0.0005221932,0.0225225225,0.0,1.0,0.0
1.3.4.2-10,TOP2470,"(TOP-10BT-03) DC-Switchgear BUC/BUD",7112,"CCGTD1_IPS",TT_FinMile,"58307",-,-,-,100,TK_Complete,11/11/2019,18/11/2019,11/11/2019,18/11/2019,"10BT70 FS","10BT70","SC1300 FS","SC1300",223,261,223,261,52,61,52,61,82,,"CCGT D1_Integrated Programme Schedule;M&E;Milestones;Added TOP's",1,1,0.000000138,0.0002034588,0.0075279756,0,1.0,0.0000812387,0.0068493151,0.0030769231,0.0002083333,0.0005221932,0.0238095238,0.0,1.0,0.0
1.3.4.2-11,TOP2480,"(TOP-10BF-03) LV Switchgear BFD",7112,"CCGTD1_IPS",TT_FinMile,"58307",-,-,-,100,TK_Complete,11/11/2019,20/11/2019,11/11/2019,20/11/2019,"00BHV70 FS","00BHV70","SC1300 FS","SC1300",223,261,223,261,52,61,52,61,82,,"CCGT D1_Integrated Programme Schedule;M&E;Milestones;Added TOP's",1,1,0.0000001656,0.0002034588,0.0073245168,0,1.0,0.0000812387,0.0068493151,0.0030769231,0.00025,0.0005221932,0.0231660232,0.0,1.0,0.0
1.3.4.2-12,TOP2490,"(TOP-10BF-02) LV Switchgear BFB/ BFC",7112,"CCGTD1_IPS",TT_FinMile,"58307",-,-,-,100,TK_Complete,05/09/2019,04/09/2019,05/09/2019,04/09/2019,"00BHV70 FS","00BHV70","SC1300 FS,CCOM1410 FS","SC1300,CCOM1410",214,250,214,250,49,58,49,58,75,,"CCGT D1_Integrated Programme Schedule;M&E;Milestones;Added TOP's",1,2,0.0000091089,0.0014242116,0.0073245168,0,1.0,0.0000812387,0.0068493151,0.0061538462,0.01375,0.0036553525,0.0231660232,0.0,1.0,0.0
1.3.4.2-13,TOP2500,"(TOP-10BMT-01) LV-Transformer BMT01",7112,"CCGTD1_IPS",TT_FinMile,"58307",-,-,-,100,TK_Complete,06/09/2019,16/08/2019,06/09/2019,16/08/2019,"10BHT-80 FS","10BHT-80","SC1300 FS","SC1300",214,248,214,248,50,57,50,57,76,,"CCGT D1_Integrated Programme Schedule;M&E;Milestones;Added TOP's",1,1,0.0000000932,0.0002034588,0.0065106816,0,1.0,0.0000812387,0.0068493151,0.0030769231,0.000140625,0.0005221932,0.0205920206,0.0,1.0,0.0
1.3.4.2-14,TOP2520,"(TOP-10CP-BOP-03) CPC Interface Panels ET200 in Function Area BOP (UQA area)",7112,"CCGTD1_IPS",TT_FinMile,"58307",-,-,-,100,TK_Complete,30/11/2019,22/11/2019,30/11/2019,22/11/2019,"10CP-WS70 FS","10CP-WS70","SC1300 FS","SC1300",226,262,226,262,52,61,52,61,84,,"CCGT D1_Integrated Programme Schedule;M&E;Milestones;Added TOP's",1,1,0.000000058,0.0002034588,0.007121058,0,1.0,0.0000812387,0.0068493151,0.0030769231,0.0000875,0.0005221932,0.0225225225,0.0,1.0,0.0
1.3.4.2-15,TOP2530,"(TOP-10CP-BOP-04) CPC Interface Panels ET200 in Function Area BOP (UTR0500 CPC91)",7112,"CCGTD1_IPS",TT_FinMile,"58307",-,-,-,100,TK_Complete,11/09/2019,05/09/2019,11/09/2019,05/09/2019,"10CP-WS70 FS","10CP-WS70","SC1300 FS","SC1300",215,250,215,250,50,58,50,58,76,,"CCGT D1_Integrated Programme Schedule;M&E;Milestones;Added TOP's",1,1,0.000000058,0.0002034588,0.007121058,0,1.0,0.0000812387,0.0068493151,0.0030769231,0.0000875,0.0005221932,0.0225225225,0.0,1.0,0.0
1.3.4.2-16,TOP2540,"(TOP-10CP-BOP-05) CPC Interface Panels ET200 in Function Area BOP (UTR0500 CPC92)",7112,"CCGTD1_IPS",TT_FinMile,"58307",-,-,-,100,TK_Complete,30/09/2019,25/09/2019,30/09/2019,25/09/2019,"10CP-WS70 FS","10CP-WS70","SC1300 FS","SC1300",217,253,217,253,50,59,50,59,78,,"CCGT D1_Integrated Programme Schedule;M&E;Milestones;Added TOP's",1,1,0.000000058,0.0002034588,0.007121058,0,1.0,0.0000812387,0.0068493151,0.0030769231,0.0000875,0.0005221932,0.0225225225,0.0,1.0,0.0
1.3.4.2-17,TOP2550,"(TOP-10BT-01) 220 V Batteries",7112,"CCGTD1_IPS",TT_FinMile,"58307",-,-,-,100,TK_Complete,31/08/2019,16/08/2019,31/08/2019,16/08/2019,"10BT70 FS","10BT70","SC1300 FS,CCOM1120 FS","SC1300,CCOM1120",213,248,213,248,49,57,49,57,71,,"CCGT D1_Integrated Programme Schedule;M&E;Milestones;Added TOP's",1,2,0.0000123936,0.0018311292,0.0075279756,0,1.0,0.0000812387,0.0068493151,0.0061538462,0.0187083333,0.0046997389,0.0238095238,0.0,1.0,0.0
1.3.4.2-18,TOP2560,"(TOP-10MBU-01) Reserve feedwater pumps and distribution system",7112,"CCGTD1_IPS",TT_FinMile,"58307",-,-,-,100,TK_Complete,21/10/2019,10/10/2019,21/10/2019,10/10/2019,"00MBU90 FS","00MBU90","SC1300 FS,CCOM2120 FS","SC1300,CCOM2120",220,255,220,255,51,59,51,59,80,,"CCGT D1_Integrated Programme Schedule;M&E;Milestones;Added TOP's",1,2,0.0000042563,0.0008138352,0.0065106816,0,1.0,0.0000812387,0.0068493151,0.0061538462,0.006425,0.0020887728,0.0205920206,0.0,1.0,0.0
1.3.4.2-19,TOP2570,"(TOP-10CKA) Partial Discharge  & Shaft voltage/current Monitoring System",7112,"CCGTD1_IPS",TT_FinMile,"58307",-,-,-,100,TK_Complete,21/10/2019,20/10/2019,21/10/2019,20/10/2019,"TOP1200 FS","TOP1200","CCOM2320 FS","CCOM2320",220,257,220,257,51,60,51,60,80,,"CCGT D1_Integrated Programme Schedule;M&E;Milestones;Added TOP's",1,1,0.0000088604,0.0004069176,0.0217700916,0,1.0,0.0000812387,0.0068493151,0.0030769231,0.013375,0.0010443864,0.0688545689,0.0,1.0,0.0
1.3.4.2-20,TOP2580,"(TOP-10CJT) SEE / SFC Equipment",7112,"CCGTD1_IPS",TT_FinMile,"58307",-,-,-,100,TK_Complete,21/10/2019,24/10/2019,21/10/2019,24/10/2019,"10BBT90 FS,10SEE2-80 FS","10BBT90,10SEE2-80","SC1300 FS,CCOM2450 FS","SC1300,CCOM2450",220,257,220,257,51,60,51,60,80,,"CCGT D1_Integrated Programme Schedule;M&E;Milestones;Added TOP's",2,2,0.0000095896,0.001017294,0.0107833164,0,1.0,0.0000812387,0.0136986301,0.0061538462,0.0144756944,0.0026109661,0.0341055341,0.0,1.0,0.0
1.3.4.2-21,TOP2590,"(TOP-10BAB) Generator Neutral point and auxilaries",7112,"CCGTD1_IPS",TT_FinMile,"58307",-,-,-,100,TK_Complete,12/11/2019,14/11/2019,12/11/2019,14/11/2019,"10BA170 FS","10BA170","SC1300 FS","SC1300",223,260,223,260,52,60,52,60,82,,"CCGT D1_Integrated Programme Schedule;M&E;Milestones;Added TOP's",1,1,0.000000276,0.0002034588,0.0120040692,0,1.0,0.0000812387,0.0068493151,0.0030769231,0.0004166667,0.0005221932,0.037966538,0.0,1.0,0.0
1.3.4.2-22,TOP2600,"(TOP-01AC) HV Switchgear interface",7112,"CCGTD1_IPS",TT_FinMile,"58307",-,-,-,100,TK_Complete,16/09/2019,12/09/2019,16/09/2019,12/09/2019,"10AC60 FS","10AC60","SC1300 FS","SC1300",215,251,215,251,50,58,50,58,76,,"CCGT D1_Integrated Programme Schedule;M&E;Milestones;Added TOP's",1,1,0.000000207,0.0002034588,0.0075279756,0,1.0,0.0000812387,0.0068493151,0.0030769231,0.0003125,0.0005221932,0.0238095238,0.0,1.0,0.0
1.3.4.2-23,TOP2610,"(TOP-10BA-01) Isolated Phase Busduct Section BAT-BAC",7112,"CCGTD1_IPS",TT_FinMile,"58307",-,-,-,100,TK_Complete,05/10/2019,29/09/2019,05/10/2019,29/09/2019,"10BA170 FS","10BA170","SC1300 FS,CCOM1770 FS","SC1300,CCOM1770",218,254,218,254,50,59,50,59,79,,"CCGT D1_Integrated Programme Schedule;M&E;Milestones;Added TOP's",1,2,0.0000027189,0.0004069176,0.0120040692,0,1.0,0.0000812387,0.0068493151,0.0061538462,0.0041041667,0.0010443864,0.037966538,0.0,1.0,0.0
1.3.4.2-24,TOP2620,"(TOP-10BA-02) Isolated Phase Busduct Section BAC-MKA",7112,"CCGTD1_IPS",TT_FinMile,"58307",-,-,-,100,TK_Complete,12/11/2019,04/11/2019,12/11/2019,04/11/2019,"10BA170 FS","10BA170","SC1300 FS,CCOM2690 FS","SC1300,CCOM2690",223,259,223,259,52,60,52,60,82,,"CCGT D1_Integrated Programme Schedule;M&E;Milestones;Added TOP's",1,2,0.0000027189,0.0004069176,0.0120040692,0,1.0,0.0000812387,0.0068493151,0.0061538462,0.0041041667,0.0010443864,0.037966538,0.0,1.0,0.0
1.3.4.2-25,TOP2630,"(TOP-00CY-01) CCTV",7112,"CCGTD1_IPS",TT_FinMile,"58307",-,-,-,100,TK_Complete,08/04/2020,19/01/2020,08/04/2020,19/01/2020,"CP-CYP7A45 FS","CP-CYP7A45","SC1300 FS","SC1300",245,270,245,270,57,63,57,63,91,,"CCGT D1_Integrated Programme Schedule;M&E;Milestones;Added TOP's",1,1,0.0000002484,0.0002034588,0.006103764,0,1.0,0.0000812387,0.0068493151,0.0030769231,0.000375,0.0005221932,0.0193050193,0.0,1.0,0.0
1.3.4.2-26,TOP2640,"(TOP-00CY-02) Telephone System",7112,"CCGTD1_IPS",TT_FinMile,"58307",-,-,-,100,TK_Complete,28/03/2020,27/02/2020,28/03/2020,27/02/2020,"00CY50 FS","00CY50","SC1300 FS","SC1300",243,275,243,275,56,64,56,64,90,,"CCGT D1_Integrated Programme Schedule;M&E;Milestones;Added TOP's",1,1,0.000000207,0.0002034588,0.0065106816,0,1.0,0.0000812387,0.0068493151,0.0030769231,0.0003125,0.0005221932,0.0205920206,0.0,1.0,0.0
1.3.4.2-27,TOP2650,"(TOP-10CR-01) Central Control Room Equipment",7112,"CCGTD1_IPS",TT_FinMile,"58307",-,-,-,100,TK_Complete,31/07/2019,15/07/2019,31/07/2019,15/07/2019,"A3300 FS","A3300","SC1300 FS,CCOM1040 FS,CCOM1030 FS","SC1300,CCOM1040,CCOM1030",209,243,209,243,48,56,48,56,67,,"CCGT D1_Integrated Programme Schedule;M&E;Milestones;Added TOP's",1,3,0.0000104798,0.0012207528,0.0099694812,0,1.0,0.0000812387,0.0068493151,0.0092307692,0.0158194444,0.0031331593,0.0315315315,0.0,1.0,0.0
1.3.4.2-28,TOP2660,"(TOP-10CR-02) Central Control Room Equipment",7112,"CCGTD1_IPS",TT_FinMile,"58307",-,-,-,100,TK_Complete,31/07/2019,04/07/2019,31/07/2019,04/07/2019,"A3300 FS","A3300","SC1300 FS,CCOM1020 FS,CCOM1010 FS","SC1300,CCOM1020,CCOM1010",209,241,209,241,48,56,48,56,67,,"CCGT D1_Integrated Programme Schedule;M&E;Milestones;Added TOP's",1,3,0.0000043934,0.0006103764,0.0099694812,0,1.0,0.0000812387,0.0068493151,0.0092307692,0.0066319444,0.0015665796,0.0315315315,0.0,1.0,0.0
1.3.4.2-29,TOP2670,"(TOP-10BF-01) LV Switchgear BFA/ BMA/BLA",7112,"CCGTD1_IPS",TT_FinMile,"58307",-,-,-,100,TK_Complete,31/07/2019,29/07/2019,31/07/2019,29/07/2019,"10BF70 FS","10BF70","SC1300 FS,CCOM1080 FS","SC1300,CCOM1080",209,245,209,245,48,57,48,57,67,,"CCGT D1_Integrated Programme Schedule;M&E;Milestones;Added TOP's",1,2,0.000010765,0.0016276704,0.0073245168,0,1.0,0.0000812387,0.0068493151,0.0061538462,0.01625,0.0041775457,0.0231660232,0.0,1.0,0.0
1.3.4.2-30,TOP2680,"(TOP-10AC) GIL",7112,"CCGTD1_IPS",TT_FinMile,"58307",-,-,-,100,TK_Complete,31/07/2019,24/07/2019,31/07/2019,24/07/2019,"10AC10 FS","10AC10","SC1300 FS","SC1300",209,244,209,244,48,57,48,57,67,,"CCGT D1_Integrated Programme Schedule;M&E;Milestones;Added TOP's",1,1,0.0000001656,0.0002034588,0.0059003052,0,1.0,0.0000812387,0.0068493151,0.0030769231,0.00025,0.0005221932,0.0186615187,0.0,1.0,0.0
1.3.4.2-31,TOP2690,"(TOP-10SMQ) 18t Gantry Crane at CWPS",7112,"CCGTD1_IPS",TT_FinMile,"58307",-,-,-,100,TK_Complete,31/07/2019,28/07/2019,31/07/2019,28/07/2019,"","","","",209,245,209,245,48,57,48,57,67,,"CCGT D1_Integrated Programme Schedule;M&E;Milestones;Added TOP's",0,0,0.0,0.0,0.0,0,1.0,0.0000812387,0.0,0.0,0.0,0.0,0.0,0.0,1.0,0.0
1.3.4.2-32,TOP2700,"(TOP-10PUS) Electro Chlorination System",7112,"CCGTD1_IPS",TT_FinMile,"58307",-,-,-,100,TK_Complete,28/03/2020,15/02/2020,28/03/2020,15/02/2020,"00PUS110 FS","00PUS110","SC1300 FS","SC1300",243,274,243,274,56,63,56,63,90,,"CCGT D1_Integrated Programme Schedule;M&E;Milestones;Added TOP's",1,1,0.0000004554,0.0002034588,0.0034587996,0,1.0,0.0000812387,0.0068493151,0.0030769231,0.0006875,0.0005221932,0.0109395109,0.0,1.0,0.0
1.3.4.2-33,TOP2710,"(TOP-10MBU-02) GT De-NOx-Water Forwarding and Injection System",7112,"CCGTD1_IPS",TT_FinMile,"58307",-,-,-,100,TK_Complete,14/10/2019,12/10/2019,14/10/2019,12/10/2019,"10MBU90 FS","10MBU90","SC1300 FS","SC1300",219,256,219,256,51,59,51,59,79,,"CCGT D1_Integrated Programme Schedule;M&E;Milestones;Added TOP's",1,1,0.0000008612,0.0002034588,0.0252288911,0,1.0,0.0000812387,0.0068493151,0.0030769231,0.0013,0.0005221932,0.0797940798,0.0,1.0,0.0
1.3.4.2-34,TOP2720,"(TOP-10PUR-20) Cathodic Protection System for Condenser",7112,"CCGTD1_IPS",TT_FinMile,"58307",-,-,-,100,TK_Complete,28/03/2020,09/12/2019,28/03/2020,09/12/2019,"10PUR60 FS","10PUR60","SC1300 FS","SC1300",243,264,243,264,56,61,56,61,90,,"CCGT D1_Integrated Programme Schedule;M&E;Milestones;Added TOP's",1,1,0.0000001449,0.0002034588,0.0258392675,0,1.0,0.0000812387,0.0068493151,0.0030769231,0.00021875,0.0005221932,0.0817245817,0.0,1.0,0.0
1.3.4.2-35,TOP2730,"(TOP-10PUR-50) Cathodic Protection System for Fuel Gas System (EKG)",7112,"CCGTD1_IPS",TT_FinMile,"58307",-,-,-,100,TK_Complete,28/03/2020,04/12/2019,28/03/2020,04/12/2019,"10PUR60 FS","10PUR60","SC1300 FS","SC1300",243,263,243,263,56,61,56,61,90,,"CCGT D1_Integrated Programme Schedule;M&E;Milestones;Added TOP's",1,1,0.0000001449,0.0002034588,0.0258392675,0,1.0,0.0000812387,0.0068493151,0.0030769231,0.00021875,0.0005221932,0.0817245817,0.0,1.0,0.0
1.3.4.2-36,TOP2740,"(TOP-10SGA-10) FF Outdoor Hydrants indluding Ring Main Line (10sga-10-01_18Jan20 / 10sga10-02_18Jan20)",7112,"CCGTD1_IPS",TT_FinMile,"58307",-,-,-,100,TK_Complete,02/04/2020,18/01/2020,02/04/2020,18/01/2020,"10SGA50 FS","10SGA50","SC1300 FS","SC1300",244,270,244,270,56,63,56,63,90,,"CCGT D1_Integrated Programme Schedule;M&E;Milestones;Added TOP's",1,1,0.0000001035,0.0002034588,0.001017294,0,1.0,0.0000812387,0.0068493151,0.0030769231,0.00015625,0.0005221932,0.0032175032,0.0,1.0,0.0
1.3.4.2-37,TOP2750,"(TOP-10SGA-20) FF Indoor Hydrants indluding Ring Main Line (10sga-20-01_18Nov19 / 10sga20-02_18Jan20)",7112,"CCGTD1_IPS",TT_FinMile,"58307",-,-,-,100,TK_Complete,02/04/2020,18/01/2020,02/04/2020,18/01/2020,"10SGA50 FS","10SGA50","SC1300 FS","SC1300",244,270,244,270,56,63,56,63,90,,"CCGT D1_Integrated Programme Schedule;M&E;Milestones;Added TOP's",1,1,0.0000001035,0.0002034588,0.001017294,0,1.0,0.0000812387,0.0068493151,0.0030769231,0.00015625,0.0005221932,0.0032175032,0.0,1.0,0.0
1.3.4.2-38,TOP2760,"(TOP-10LBG) Auxiliary Steam System for Power Island",7112,"CCGTD1_IPS",TT_FinMile,"58307",-,-,-,100,TK_Complete,08/11/2019,29/11/2019,08/11/2019,29/11/2019,"10LBG90 FS","10LBG90","SC1300 FS","SC1300",223,263,223,263,52,61,52,61,81,,"CCGT D1_Integrated Programme Schedule;M&E;Milestones;Added TOP's",1,1,0.000000559,0.0002034588,0.0034587996,0,1.0,0.0000812387,0.0068493151,0.0030769231,0.00084375,0.0005221932,0.0109395109,0.0,1.0,0.0
1.3.4.2-39,TOP2770,"(TOP-10SGM-01) Inert gas system inside UBA",7112,"CCGTD1_IPS",TT_FinMile,"58307",-,-,-,100,TK_Complete,01/04/2020,13/03/2020,01/04/2020,13/03/2020,"00SGM-01-50 FS","00SGM-01-50","SC1300 FS","SC1300",244,278,244,278,56,64,56,64,90,,"CCGT D1_Integrated Programme Schedule;M&E;Milestones;Added TOP's",1,1,0.0000000828,0.0002034588,0.0136317396,0,1.0,0.0000812387,0.0068493151,0.0030769231,0.000125,0.0005221932,0.0431145431,0.0,1.0,0.0
1.3.4.2-40,TOP2780,"(TOP-10SGM-02) Inert gas system inside UBN container",7112,"CCGTD1_IPS",TT_FinMile,"58307",-,-,-,100,TK_Complete,01/04/2020,13/03/2020,01/04/2020,13/03/2020,"00SGM-01-50 FS","00SGM-01-50","SC1300 FS","SC1300",244,278,244,278,56,64,56,64,90,,"CCGT D1_Integrated Programme Schedule;M&E;Milestones;Added TOP's",1,1,0.0000000828,0.0002034588,0.0136317396,0,1.0,0.0000812387,0.0068493151,0.0030769231,0.000125,0.0005221932,0.0431145431,0.0,1.0,0.0
1.3.4.2-41,TOP2790,"(TOP-10SGM-03) Inert gas system inside CPP Control room",7112,"CCGTD1_IPS",TT_FinMile,"58307",-,-,-,100,TK_Complete,01/04/2020,13/03/2020,01/04/2020,13/03/2020,"00SGM-01-50 FS","00SGM-01-50","SC1300 FS","SC1300",244,278,244,278,56,64,56,64,90,,"CCGT D1_Integrated Programme Schedule;M&E;Milestones;Added TOP's",1,1,0.0000000828,0.0002034588,0.0136317396,0,1.0,0.0000812387,0.0068493151,0.0030769231,0.000125,0.0005221932,0.0431145431,0.0,1.0,0.0
1.3.4.2-42,TOP2800,"(TOP-10GM-05) Plant Drainage System for UGH Area",7112,"CCGTD1_IPS",TT_FinMile,"58307",-,-,-,100,TK_Complete,02/04/2020,20/12/2019,02/04/2020,20/12/2019,"00GM-03-80 FS","00GM-03-80","SC1300 FS","SC1300",244,266,244,266,56,62,56,62,90,,"CCGT D1_Integrated Programme Schedule;M&E;Milestones;Added TOP's",1,1,0.0000000828,0.0002034588,0.0140386572,0,1.0,0.0000812387,0.0068493151,0.0030769231,0.000125,0.0005221932,0.0444015444,0.0,1.0,0.0
1.3.4.2-43,TOP2810,"(TOP-10GM-04) Plant Drainage System for UGU/UTS/UVM Area",7112,"CCGTD1_IPS",TT_FinMile,"58307",-,-,-,100,TK_Complete,02/04/2020,27/03/2020,02/04/2020,27/03/2020,"00GM-03-80 FS","00GM-03-80","SC1300 FS","SC1300",244,280,244,280,56,65,56,65,90,,"CCGT D1_Integrated Programme Schedule;M&E;Milestones;Added TOP's",1,1,0.0000000828,0.0002034588,0.0140386572,0,1.0,0.0000812387,0.0068493151,0.0030769231,0.000125,0.0005221932,0.0444015444,0.0,1.0,0.0
1.3.4.2-44,TOP2820,"(TOP-10GM-06) Plant Drainage System from UGH to Seal Pit Area",7112,"CCGTD1_IPS",TT_FinMile,"58307",-,-,-,100,TK_Complete,02/04/2020,20/12/2019,02/04/2020,20/12/2019,"00GM-03-80 FS","00GM-03-80","SC1300 FS","SC1300",244,266,244,266,56,62,56,62,90,,"CCGT D1_Integrated Programme Schedule;M&E;Milestones;Added TOP's",1,1,0.0000000828,0.0002034588,0.0140386572,0,1.0,0.0000812387,0.0068493151,0.0030769231,0.000125,0.0005221932,0.0444015444,0.0,1.0,0.0
1.3.4.2-45,TOP2830,"(TOP-10GNR) Centralized Chemical Drain System",7112,"CCGTD1_IPS",TT_FinMile,"58307",-,-,-,100,TK_Complete,28/03/2020,15/01/2020,28/03/2020,15/01/2020,"TOP1090 FS","TOP1090","","",243,269,243,269,56,62,56,62,90,,"CCGT D1_Integrated Programme Schedule;M&E;Milestones;Added TOP's",1,0,0.0,0.0,0.0038657172,0,1.0,0.0000812387,0.0068493151,0.0,0.0,0.0,0.0122265122,0.0,1.0,0.0
1.3.4.2-46,TOP2840,"(TOP-10QJA10) Carbon Dioxide Distribution System",7112,"CCGTD1_IPS",TT_FinMile,"58307",-,-,-,100,TK_Complete,08/04/2020,24/12/2019,08/04/2020,24/12/2019,"00MKG90 FS","00MKG90","SC1300 FS","SC1300",245,266,245,266,57,62,57,62,91,,"CCGT D1_Integrated Programme Schedule;M&E;Milestones;Added TOP's",1,1,0.0000003312,0.0002034588,0.0134282808,0,1.0,0.0000812387,0.0068493151,0.0030769231,0.0005,0.0005221932,0.0424710425,0.0,1.0,0.0
1.3.4.2-47,TOP2850,"(TOP-10QJA20) Hydrogen Distribution System",7112,"CCGTD1_IPS",TT_FinMile,"58307",-,-,-,100,TK_Complete,01/04/2020,07/01/2020,01/04/2020,07/01/2020,"00MBH90 FS","00MBH90","SC1300 FS","SC1300",244,268,244,268,56,62,56,62,90,,"CCGT D1_Integrated Programme Schedule;M&E;Milestones;Added TOP's",1,1,0.0000004968,0.0002034588,0.0148524924,0,1.0,0.0000812387,0.0068493151,0.0030769231,0.00075,0.0005221932,0.046975547,0.0,1.0,0.0
1.3.4.2-48,TOP2860,"(TOP-10GHC-01) Demin water supply system - Pump skid",7112,"CCGTD1_IPS",TT_FinMile,"58307",-,-,-,100,TK_Complete,16/09/2019,12/09/2019,16/09/2019,12/09/2019,"10GHC80 FS","10GHC80","SC1300 FS,CCOM1590 FS","SC1300,CCOM1590",215,251,215,251,50,58,50,58,76,,"CCGT D1_Integrated Programme Schedule;M&E;Milestones;Added TOP's",1,2,0.0000071123,0.0008138352,0.0205493388,0,1.0,0.0000812387,0.0068493151,0.0061538462,0.0107361111,0.0020887728,0.064993565,0.0,1.0,0.0
1.3.4.2-49,TOP2870,"(TOP-10GHC-02) Demineralized Water Distribution Pump skid - D5 terminal point",7112,"CCGTD1_IPS",TT_FinMile,"58307",-,-,-,100,TK_Complete,16/09/2019,12/09/2019,16/09/2019,12/09/2019,"10GHC80 FS","10GHC80","SC1300 FS,CCOM1600 FS","SC1300,CCOM1600",215,251,215,251,50,58,50,58,77,,"CCGT D1_Integrated Programme Schedule;M&E;Milestones;Added TOP's",1,2,0.0000071123,0.0008138352,0.0205493388,0,1.0,0.0000812387,0.0068493151,0.0061538462,0.0107361111,0.0020887728,0.064993565,0.0,1.0,0.0
1.3.4.2-50,TOP2880,"(TOP-10GHC-03) Demineralized Water Distribution System Power Island",7112,"CCGTD1_IPS",TT_FinMile,"58307",-,-,-,100,TK_Complete,16/09/2019,12/09/2019,16/09/2019,12/09/2019,"10GHC80 FS","10GHC80","SC1300 FS,CCOM1610 FS","SC1300,CCOM1610",215,251,215,251,50,58,50,58,77,,"CCGT D1_Integrated Programme Schedule;M&E;Milestones;Added TOP's",1,2,0.0000071123,0.0008138352,0.0205493388,0,1.0,0.0000812387,0.0068493151,0.0061538462,0.0107361111,0.0020887728,0.064993565,0.0,1.0,0.0
1.3.4.2-51,TOP2890,"(TOP-10CX) Weather Station and other minor auxiliaries",7112,"CCGTD1_IPS",TT_FinMile,"58307",-,-,-,100,TK_Complete,14/04/2020,09/12/2019,14/04/2020,09/12/2019,"SC1250 FS","SC1250","","",245,264,245,264,57,61,57,61,91,,"CCGT D1_Integrated Programme Schedule;M&E;Milestones;Added TOP's",1,0,0.0,0.0,0.3159715158,0,1.0,0.0000812387,0.0068493151,0.0,0.0,0.0,0.9993564994,0.0,1.0,0.0
1.3.4.2-52,TOP2910,"(TOP-10GM-03) Plant Drainage System for UBH Area",7112,"CCGTD1_IPS",TT_FinMile,"58307",-,-,-,100,TK_Complete,02/04/2020,20/12/2019,02/04/2020,20/12/2019,"00GM-03-80 FS","00GM-03-80","SC1300 FS","SC1300",244,266,244,266,56,62,56,62,90,,"CCGT D1_Integrated Programme Schedule;M&E;Milestones;Added TOP's",1,1,0.0000000828,0.0002034588,0.0140386572,0,1.0,0.0000812387,0.0068493151,0.0030769231,0.000125,0.0005221932,0.0444015444,0.0,1.0,0.0
1.3.4.2-53,TOP2920,"TOP-10BT-02 DC-Switchgear BUA/BUB, Chargers and DC-DC converters",7112,"CCGTD1_IPS",TT_FinMile,"58307",-,-,-,100,TK_Complete,31/07/2019,29/07/2019,31/07/2019,29/07/2019,"10BT70 FS","10BT70","SC1300 FS","SC1300",209,245,209,245,48,57,48,57,67,,"CCGT D1_Integrated Programme Schedule;M&E;Milestones;Added TOP's",1,1,0.000000138,0.0002034588,0.0075279756,0,1.0,0.0000812387,0.0068493151,0.0030769231,0.0002083333,0.0005221932,0.0238095238,0.0,1.0,0.0
1.3.4.3,58306,"Turnover Package (TOP)",7112,"CCGTD1_IPS",WBS,"58303",,,,100,Complete,03/06/2019,16/07/2019,15/04/2020,27/03/2020,,,,,200,243,246,280,46,56,57,65,,,"CCGT D1_Integrated Programme Schedule;M&E;Milestones"
1.3.4.3-1,TOP1440,"(TOP-10PAB-02) Circulating Water System - Power Island Part",7112,"CCGTD1_IPS",TT_FinMile,"58306",-,-,-,100,TK_Complete,30/03/2020,21/12/2019,30/03/2020,21/12/2019,"10PAB-02-90 FS","10PAB-02-90","SC1080 FS,SC1240 FS,SC1230 FS,SC1170 FS","SC1080,SC1240,SC1230,SC1170",243,266,243,266,56,62,56,62,90,,"CCGT D1_Integrated Programme Schedule;M&E;Milestones;Turnover Package (TOP)",1,4,0.0000071837,0.0022380468,0.0307222787,0,1.0,0.0000812387,0.0068493151,0.0123076923,0.0108439408,0.0057441253,0.0971685972,0.0,1.0,0.0
1.3.4.3-2,TOP1460,"(TOP-00SCA) Compressed Air Station",7112,"CCGTD1_IPS",TT_FinMile,"58306",-,-,-,100,TK_Complete,01/11/2019,11/10/2019,01/11/2019,11/10/2019,"00SCA90 FS","00SCA90","SC1240 FS,SC1230 FS","SC1240,SC1230",222,256,222,256,51,59,51,59,80,,"CCGT D1_Integrated Programme Schedule;M&E;Milestones;Turnover Package (TOP)",1,2,0.0000026499,0.0016276704,0.0046795524,0,1.0,0.0000812387,0.0068493151,0.0061538462,0.004,0.0041775457,0.0148005148,0.0,1.0,0.0
1.3.4.3-3,TOP1470,"(TOP-10SGA) FF Indoor Hydrants 10SGA Inside 10ULA, 10UHA, 10UMC",7112,"CCGTD1_IPS",TT_FinMile,"58306",-,-,-,100,TK_Complete,09/04/2020,18/01/2020,09/04/2020,18/01/2020,"10SGA50 FS,00SGA-01-90 FS,10SGA60 FS","10SGA50,00SGA-01-90,10SGA60","SC1230 FS,SC1240 FS","SC1230,SC1240",245,270,245,270,57,63,57,63,91,,"CCGT D1_Integrated Programme Schedule;M&E;Milestones;Turnover Package (TOP)",3,2,0.0000029811,0.0016276704,0.0028484232,0,1.0,0.0000812387,0.0205479452,0.0061538462,0.0045,0.0041775457,0.009009009,0.0,1.0,0.0
1.3.4.3-4,TOP1480,"(TOP-10SGC-02) FF Spray Deluge System 10SGC for Lube Oil / Seal Oil System",7112,"CCGTD1_IPS",TT_FinMile,"58306",-,-,-,100,TK_Complete,09/04/2020,15/01/2020,09/04/2020,15/01/2020,"10SGA-02-50 FS,10SGC-02-50 FS","10SGA-02-50,10SGC-02-50","SC1230 FS,SC1240 FS","SC1230,SC1240",245,269,245,269,57,62,57,62,91,,"CCGT D1_Integrated Programme Schedule;M&E;Milestones;Turnover Package (TOP)",2,2,0.0000024842,0.0016276704,0.0138351984,0,1.0,0.0000812387,0.0136986301,0.0061538462,0.00375,0.0041775457,0.0437580438,0.0,1.0,0.0
1.3.4.3-5,TOP1490,"(TOP-10BBA) MV Switchgear 10BBA",7112,"CCGTD1_IPS",TT_FinMile,"58306",-,-,-,100,TK_Complete,31/07/2019,19/07/2019,31/07/2019,19/07/2019,"10BBE60 FS","10BBE60","SC1210 FS,SC1190 FS,SC1180 FS,SC1240 FS,SC1230 FS,CCOM1050 FS","SC1210,SC1190,SC1180,SC1240,SC1230,CCOM1050",209,244,209,244,48,56,48,56,67,,"CCGT D1_Integrated Programme Schedule;M&E;Milestones;Turnover Package (TOP)",1,6,0.0000269539,0.006103764,0.0073245168,0,1.0,0.0000812387,0.0068493151,0.0184615385,0.0406875,0.0156657963,0.0231660232,0.0,1.0,0.0
1.3.4.3-6,TOP1500,"(TOP-10BF) LV Switchgear 10BFE/10BMA",7112,"CCGTD1_IPS",TT_FinMile,"58306",-,-,-,100,TK_Complete,03/06/2019,29/07/2019,03/06/2019,29/07/2019,"10BF70 FS","10BF70","SC1230 FS,SC1180 FS,SC1190 FS,SC1240 FS","SC1230,SC1180,SC1190,SC1240",200,245,200,245,46,57,46,57,61,,"CCGT D1_Integrated Programme Schedule;M&E;Milestones;Turnover Package (TOP)",1,4,0.0000032709,0.0024415056,0.0073245168,0,1.0,0.0000812387,0.0068493151,0.0123076923,0.0049375,0.0062663185,0.0231660232,0.0,1.0,0.0
1.3.4.3-7,TOP1520,"(TOP-10BT) DC-SWITCHGEAR 10BU",7112,"CCGTD1_IPS",TT_FinMile,"58306",-,-,-,100,TK_Complete,29/07/2019,29/07/2019,29/07/2019,29/07/2019,"10BT70 FS","10BT70","SC1230 FS,SC1240 FS,SC1180 FS,SC1210 FS","SC1230,SC1240,SC1180,SC1210",208,245,208,245,48,57,48,57,67,,"CCGT D1_Integrated Programme Schedule;M&E;Milestones;Turnover Package (TOP)",1,4,0.0000045544,0.0022380468,0.0075279756,0,1.0,0.0000812387,0.0068493151,0.0123076923,0.006875,0.0057441253,0.0238095238,0.0,1.0,0.0
1.3.4.3-8,TOP1530,"(TOP-10CHA) Generator Protection 10CHA",7112,"CCGTD1_IPS",TT_FinMile,"58306",-,-,-,100,TK_Complete,16/09/2019,12/08/2019,16/09/2019,12/08/2019,"10CHA80 FS,10MKB250 FS,10MKB80 FS","10CHA80,10MKB250,10MKB80","SC1230 FS,SC1240 FS,SC1210 FS,CCOM1100 FS","SC1230,SC1240,SC1210,CCOM1100",215,247,215,247,50,57,50,57,76,,"CCGT D1_Integrated Programme Schedule;M&E;Milestones;Turnover Package (TOP)",3,4,0.0000362602,0.004069176,0.012207528,0,1.0,0.0000812387,0.0205479452,0.0123076923,0.0547354167,0.0104438642,0.0386100386,0.0,1.0,0.0
1.3.4.3-9,TOP1560,"(TOP-10CJ) Automation System 10CJ",7112,"CCGTD1_IPS",TT_FinMile,"58306",-,-,-,100,TK_Complete,17/10/2019,17/08/2019,17/10/2019,17/08/2019,"","","SC1230 FS,SC1240 FS","SC1230,SC1240",220,248,220,248,51,57,51,57,79,,"CCGT D1_Integrated Programme Schedule;M&E;Milestones;Turnover Package (TOP)",0,2,0.0,0.0016276704,0.0,0,1.0,0.0000812387,0.0,0.0061538462,0.0,0.0041775457,0.0,0.0,1.0,0.0
1.3.4.3-10,TOP1570,"(TOP-10CP-AA) ET200 Stations in Function Area 10 Auxiliary and Ancillary",7112,"CCGTD1_IPS",TT_FinMile,"58306",-,-,-,100,TK_Complete,11/11/2019,17/08/2019,11/11/2019,17/08/2019,"10CP-AA70 FS","10CP-AA70","SC1240 FS,SC1230 FS","SC1240,SC1230",223,248,223,248,52,57,52,57,81,,"CCGT D1_Integrated Programme Schedule;M&E;Milestones;Turnover Package (TOP)",1,2,0.0000023186,0.0016276704,0.007121058,0,1.0,0.0000812387,0.0068493151,0.0061538462,0.0035,0.0041775457,0.0225225225,0.0,1.0,0.0
1.3.4.3-11,TOP1580,"(TOP-10CP-HR) ET200 Stations in Function Area 10 HRSG",7112,"CCGTD1_IPS",TT_FinMile,"58306",-,-,-,100,TK_Complete,04/09/2019,04/09/2019,04/09/2019,04/09/2019,"10CP-HR70 FS","10CP-HR70","SC1240 FS,SC1230 FS","SC1240,SC1230",214,250,214,250,49,58,49,58,75,,"CCGT D1_Integrated Programme Schedule;M&E;Milestones;Turnover Package (TOP)",1,2,0.0000019874,0.0016276704,0.0018311292,0,1.0,0.0000812387,0.0068493151,0.0061538462,0.003,0.0041775457,0.0057915058,0.0,1.0,0.0
1.3.4.3-12,TOP1590,"(TOP-10CP-WS) ET200 Stations in Function Area 10 Water / Steam Cycle",7112,"CCGTD1_IPS",TT_FinMile,"58306",-,-,-,100,TK_Complete,02/09/2019,17/08/2019,02/09/2019,17/08/2019,"10CP-WS70 FS","10CP-WS70","SC1240 FS,SC1230 FS","SC1240,SC1230",213,248,213,248,49,57,49,57,74,,"CCGT D1_Integrated Programme Schedule;M&E;Milestones;Turnover Package (TOP)",1,2,0.0000023186,0.0016276704,0.007121058,0,1.0,0.0000812387,0.0068493151,0.0061538462,0.0035,0.0041775457,0.0225225225,0.0,1.0,0.0
1.3.4.3-13,TOP1620,"(TOP-10CP-ST) ET200 Stations in Function Area 10ST",7112,"CCGTD1_IPS",TT_FinMile,"58306",-,-,-,100,TK_Complete,06/09/2019,15/08/2019,06/09/2019,15/08/2019,"10CP-ST-70 FS","10CP-ST-70","SC1230 FS,SC1240 FS,CCOM1110 FS","SC1230,SC1240,CCOM1110",214,247,214,247,50,57,50,57,75,,"CCGT D1_Integrated Programme Schedule;M&E;Milestones;Turnover Package (TOP)",1,3,0.0000034779,0.0024415056,0.0018311292,0,1.0,0.0000812387,0.0068493151,0.0092307692,0.00525,0.0062663185,0.0057915058,0.0,1.0,0.0
1.3.4.3-14,TOP1640,"(TOP-10CP-GT) ET200 Stations in Function Area 10GT",7112,"CCGTD1_IPS",TT_FinMile,"58306",-,-,-,100,TK_Complete,12/09/2019,08/08/2019,12/09/2019,08/08/2019,"10CP-GT70 FS","10CP-GT70","SC1240 FS,SC1230 FS,CCOM1090 FS","SC1240,SC1230,CCOM1090",215,246,215,246,50,57,50,57,76,,"CCGT D1_Integrated Programme Schedule;M&E;Milestones;Turnover Package (TOP)",1,3,0.0000112205,0.003051882,0.0067141404,0,1.0,0.0000812387,0.0068493151,0.0092307692,0.0169375,0.0078328982,0.0212355212,0.0,1.0,0.0
1.3.4.3-15,TOP1650,"(TOP-10SGJ-01) FF CO2 System for PCC 10SGJ",7112,"CCGTD1_IPS",TT_FinMile,"58306",-,-,-,100,TK_Complete,15/04/2020,06/01/2020,15/04/2020,06/01/2020,"FSS22.1060 FS","FSS22.1060","SC1240 FS,SC1220 FS,SC1230 FS","SC1240,SC1220,SC1230",246,268,246,268,57,62,57,62,91,,"CCGT D1_Integrated Programme Schedule;M&E;Milestones;Turnover Package (TOP)",1,3,0.0000028845,0.002034588,0.0120040692,0,1.0,0.0000812387,0.0068493151,0.0092307692,0.0043541667,0.0052219321,0.037966538,0.0,1.0,0.0
1.3.4.3-16,TOP1660,"(TOP-10BAT) Main Transformer 10BAT01/10BBT01",7112,"CCGTD1_IPS",TT_FinMile,"58306",-,-,-,100,TK_Complete,16/09/2019,17/08/2019,16/09/2019,17/08/2019,"10BAT120 FS","10BAT120","SC1190 FS,SC1180 FS,SC1230 FS,SC1240 FS,SC1210 FS,CCOM1140 FS","SC1190,SC1180,SC1230,SC1240,SC1210,CCOM1140",215,248,215,248,50,57,50,57,76,,"CCGT D1_Integrated Programme Schedule;M&E;Milestones;Turnover Package (TOP)",1,6,0.0000706363,0.0095625636,0.0095625636,0,1.0,0.0000812387,0.0068493151,0.0184615385,0.1066268029,0.0245430809,0.0302445302,0.0,1.0,0.0
1.3.4.3-17,TOP1670,"(TOP-10GM-01) Plant Drainage System for 10UBE/10UBF",7112,"CCGTD1_IPS",TT_FinMile,"58306",-,-,-,100,TK_Complete,04/11/2019,22/11/2019,04/11/2019,22/11/2019,"10GM-01-80 FS,10GM-01-90 FS","10GM-01-80,10GM-01-90","SC1230 FS,SC1240 FS","SC1230,SC1240",222,262,222,262,51,61,51,61,81,,"CCGT D1_Integrated Programme Schedule;M&E;Milestones;Turnover Package (TOP)",2,2,0.0000023642,0.0016276704,0.0136317396,0,1.0,0.0000812387,0.0136986301,0.0061538462,0.00356875,0.0041775457,0.0431145431,0.0,1.0,0.0
1.3.4.3-18,TOP1680,"(TOP-10MKC) SEE/SFC Equipment, Excitation Transformer MKC; SFC Transformer MBJ",7112,"CCGTD1_IPS",TT_FinMile,"58306",-,-,-,100,TK_Complete,28/10/2019,25/10/2019,28/10/2019,25/10/2019,"10SEE2-80 FS,10SFC-80 FS","10SEE2-80,10SFC-80","SC1210 FS,SC1230 FS,SC1240 FS,CCOM2470 FS","SC1210,SC1230,SC1240,CCOM2470",221,258,221,258,51,60,51,60,80,,"CCGT D1_Integrated Programme Schedule;M&E;Milestones;Turnover Package (TOP)",2,4,0.0000232074,0.0034587996,0.0107833164,0,1.0,0.0000812387,0.0136986301,0.0123076923,0.0350320112,0.0088772846,0.0341055341,0.0,1.0,0.0
1.3.4.3-19,TOP1690,"(TOP-10SGC-01) FF Spray Deluge System for BAT/ BBT SGC",7112,"CCGTD1_IPS",TT_FinMile,"58306",-,-,-,100,TK_Complete,14/04/2020,18/03/2020,14/04/2020,18/03/2020,"10SGC-01-50 FS","10SGC-01-50","SC1240 FS,SC1230 FS","SC1240,SC1230",245,278,245,278,57,65,57,65,91,,"CCGT D1_Integrated Programme Schedule;M&E;Milestones;Turnover Package (TOP)",1,2,0.0000016562,0.0016276704,0.0022380468,0,1.0,0.0000812387,0.0068493151,0.0061538462,0.0025,0.0041775457,0.0070785071,0.0,1.0,0.0
1.3.4.3-20,TOP1700,"(TOP-10LD) Condensate Polishing Plant",7112,"CCGTD1_IPS",TT_FinMile,"58306",-,-,-,100,TK_Complete,30/03/2020,15/02/2020,30/03/2020,15/02/2020,"10LD-90 FS","10LD-90","SC1230 FS,SC1240 FS,SC1170 FS","SC1230,SC1240,SC1170",243,274,243,274,56,63,56,63,90,,"CCGT D1_Integrated Programme Schedule;M&E;Milestones;Turnover Package (TOP)",1,3,0.0000041404,0.002034588,0.0024415056,0,1.0,0.0000812387,0.0068493151,0.0092307692,0.00625,0.0052219321,0.0077220077,0.0,1.0,0.0
1.3.4.3-21,TOP1710,"(TOP-10LDK) Condensate Polishing System",7112,"CCGTD1_IPS",TT_FinMile,"58306",-,-,-,100,TK_Complete,11/11/2019,26/11/2019,11/11/2019,26/11/2019,"10LDK-90 FS","10LDK-90","SC1230 FS,SC1240 FS,SC1170 FS","SC1230,SC1240,SC1170",223,262,223,262,52,61,52,61,82,,"CCGT D1_Integrated Programme Schedule;M&E;Milestones;Turnover Package (TOP)",1,3,0.0000045906,0.002034588,0.0073245168,0,1.0,0.0000812387,0.0068493151,0.0092307692,0.0069295635,0.0052219321,0.0231660232,0.0,1.0,0.0
1.3.4.3-22,TOP1720,"(TOP-10BA) Isolated Generator Busduct 10BAA Incl. 10BAB, BAC",7112,"CCGTD1_IPS",TT_FinMile,"58306",-,-,-,100,TK_Complete,13/11/2019,05/11/2019,13/11/2019,05/11/2019,"10BA170 FS","10BA170","SC1230 FS,SC1210 FS,SC1180 FS,SC1190 FS,SC1240 FS","SC1230,SC1210,SC1180,SC1190,SC1240",224,259,224,259,52,60,52,60,82,,"CCGT D1_Integrated Programme Schedule;M&E;Milestones;Turnover Package (TOP)",1,5,0.0000093217,0.0026449644,0.0120040692,0,1.0,0.0000812387,0.0068493151,0.0153846154,0.0140713542,0.0067885117,0.037966538,0.0,1.0,0.0
1.3.4.3-23,TOP1730,"(TOP-00XKA) Emergency Diesel Generator Set",7112,"CCGTD1_IPS",TT_FinMile,"58306",-,-,-,100,TK_Complete,07/11/2019,22/11/2019,07/11/2019,22/11/2019,"00XKA60 FS","00XKA60","SC1210 FS,SC1230 FS,SC1240 FS","SC1210,SC1230,SC1240",223,262,223,262,52,61,52,61,81,,"CCGT D1_Integrated Programme Schedule;M&E;Milestones;Turnover Package (TOP)",1,3,0.0000010765,0.002034588,0.0065106816,0,1.0,0.0000812387,0.0068493151,0.0092307692,0.001625,0.0052219321,0.0205920206,0.0,1.0,0.0
1.3.4.3-24,TOP1740,"(TOP-00SGM) FF Protection System for UBN",7112,"CCGTD1_IPS",TT_FinMile,"58306",-,-,-,100,TK_Complete,02/04/2020,13/03/2020,02/04/2020,13/03/2020,"00SGM-01-50 FS","00SGM-01-50","SC1230 FS,SC1240 FS","SC1230,SC1240",244,278,244,278,56,64,56,64,90,,"CCGT D1_Integrated Programme Schedule;M&E;Milestones;Turnover Package (TOP)",1,2,0.0000016562,0.0016276704,0.0136317396,0,1.0,0.0000812387,0.0068493151,0.0061538462,0.0025,0.0041775457,0.0431145431,0.0,1.0,0.0
1.3.4.3-25,TOP1750,"(TOP-10BFT01) LV Transformer BFT01 (BHT)",7112,"CCGTD1_IPS",TT_FinMile,"58306",-,-,-,100,TK_Complete,16/09/2019,18/09/2019,16/09/2019,18/09/2019,"10BHT-80 FS","10BHT-80","SC1190 FS,SC1180 FS,SC1240 FS,SC1230 FS,CCOM1650 FS","SC1190,SC1180,SC1240,SC1230,CCOM1650",215,252,215,252,50,58,50,58,76,,"CCGT D1_Integrated Programme Schedule;M&E;Milestones;Turnover Package (TOP)",1,5,0.0000054463,0.003051882,0.0065106816,0,1.0,0.0000812387,0.0068493151,0.0153846154,0.0082213542,0.0078328982,0.0205920206,0.0,1.0,0.0
1.3.4.3-26,TOP1760,"(TOP-10BFT02) LV Transformer BFT02 (BHT)",7112,"CCGTD1_IPS",TT_FinMile,"58306",-,-,-,100,TK_Complete,09/09/2019,29/08/2019,09/09/2019,29/08/2019,"10BHT-80 FS","10BHT-80","SC1240 FS,SC1180 FS,SC1210 FS,SC1190 FS,SC1230 FS,CCOM1320 FS","SC1240,SC1180,SC1210,SC1190,SC1230,CCOM1320",214,249,214,249,50,58,50,58,76,,"CCGT D1_Integrated Programme Schedule;M&E;Milestones;Turnover Package (TOP)",1,6,0.0000038523,0.0032553408,0.0065106816,0,1.0,0.0000812387,0.0068493151,0.0184615385,0.0058151042,0.0083550914,0.0205920206,0.0,1.0,0.0
1.3.4.3-27,TOP1770,"(TOP-10BBT) MV Transformer BBT01",7112,"CCGTD1_IPS",TT_FinMile,"58306",-,-,-,100,TK_Complete,13/09/2019,07/09/2019,13/09/2019,07/09/2019,"10BBT90 FS","10BBT90","SC1210 FS,SC1240 FS,SC1180 FS,SC1230 FS,SC1190 FS,CCOM1500 FS","SC1210,SC1240,SC1180,SC1230,SC1190,CCOM1500",215,251,215,251,50,58,50,58,76,,"CCGT D1_Integrated Programme Schedule;M&E;Milestones;Turnover Package (TOP)",1,6,0.0000291766,0.006103764,0.0073245168,0,1.0,0.0000812387,0.0068493151,0.0184615385,0.0440427083,0.0156657963,0.0231660232,0.0,1.0,0.0
1.3.4.3-28,TOP1790,"(TOP-10MBR) GT Exhaust Gas System",7112,"CCGTD1_IPS",TT_FinMile,"58306",-,-,-,100,TK_Complete,18/11/2019,01/11/2019,18/11/2019,01/11/2019,"10MBR1030 FS","10MBR1030","SC1240 FS,SC1230 FS,SC1060-2 FS","SC1240,SC1230,SC1060-2",224,259,224,259,52,60,52,60,82,,"CCGT D1_Integrated Programme Schedule;M&E;Milestones;Turnover Package (TOP)",1,3,0.0000167879,0.002034588,0.0299084435,0,1.0,0.0000812387,0.0068493151,0.0092307692,0.0253416667,0.0052219321,0.0945945946,0.0,1.0,0.0
1.3.4.3-29,TOP1800,"(TOP-10EK) FUEL GAS SUPPLY SYSTEM FOR GT10",7112,"CCGTD1_IPS",TT_FinMile,"58306",-,-,-,100,TK_Complete,30/03/2020,09/01/2020,30/03/2020,09/01/2020,"10EK80 FS","10EK80","SC1240 FS,SC1230 FS,SC1170 FS","SC1240,SC1230,SC1170",243,268,243,268,56,62,56,62,90,,"CCGT D1_Integrated Programme Schedule;M&E;Milestones;Turnover Package (TOP)",1,3,0.0000048299,0.002034588,0.0158697864,0,1.0,0.0000812387,0.0068493151,0.0092307692,0.0072908158,0.0052219321,0.0501930502,0.0,1.0,0.0
1.3.4.3-30,TOP1810,"(TOP-10BZL-02) L&SP incl. BMZ at 10UHA Area",7112,"CCGTD1_IPS",TT_FinMile,"58306",-,-,-,100,TK_Complete,30/03/2020,05/02/2020,30/03/2020,05/02/2020,"10BZL-02-40 FS","10BZL-02-40","SC1230 FS,SC1240 FS","SC1230,SC1240",243,272,243,272,56,63,56,63,90,,"CCGT D1_Integrated Programme Schedule;M&E;Milestones;Turnover Package (TOP)",1,2,0.0000013249,0.0016276704,0.0063072228,0,1.0,0.0000812387,0.0068493151,0.0061538462,0.002,0.0041775457,0.0199485199,0.0,1.0,0.0
1.3.4.3-31,TOP1820,"(TOP-10CFE) CEMS",7112,"CCGTD1_IPS",TT_FinMile,"58306",-,-,-,100,TK_Complete,31/03/2020,06/01/2020,31/03/2020,06/01/2020,"","","SC1230 FS,SC1240 FS","SC1230,SC1240",243,268,243,268,56,62,56,62,90,,"CCGT D1_Integrated Programme Schedule;M&E;Milestones;Turnover Package (TOP)",0,2,0.0,0.0016276704,0.0,0,1.0,0.0000812387,0.0,0.0061538462,0.0,0.0041775457,0.0,0.0,1.0,0.0
1.3.4.3-32,TOP1830,"(TOP-10HAD10) HRSG HP Steam",7112,"CCGTD1_IPS",TT_FinMile,"58306",-,-,-,100,TK_Complete,18/11/2019,22/11/2019,18/11/2019,22/11/2019,"10HAD10-90 FS","10HAD10-90","SC1240 FS,SC1110 FS,SC1230 FS","SC1240,SC1110,SC1230",224,262,224,262,52,61,52,61,82,,"CCGT D1_Integrated Programme Schedule;M&E;Milestones;Turnover Package (TOP)",1,3,0.0000051741,0.0018311292,0.0154628688,0,1.0,0.0000812387,0.0068493151,0.0092307692,0.0078104167,0.0046997389,0.0489060489,0.0,1.0,0.0
1.3.4.3-33,TOP1840,"(TOP-10HAD50) HRSG IP Steam",7112,"CCGTD1_IPS",TT_FinMile,"58306",-,-,-,100,TK_Complete,07/11/2019,22/11/2019,07/11/2019,22/11/2019,"10HAD50-90 FS","10HAD50-90","SC1110 FS,SC1240 FS,SC1230 FS","SC1110,SC1240,SC1230",223,262,223,262,52,61,52,61,81,,"CCGT D1_Integrated Programme Schedule;M&E;Milestones;Turnover Package (TOP)",1,3,0.0000030315,0.0018311292,0.0150559512,0,1.0,0.0000812387,0.0068493151,0.0092307692,0.0045760417,0.0046997389,0.0476190476,0.0,1.0,0.0
1.3.4.3-34,TOP1850,"(TOP-10HAD80) HRSG LP Steam",7112,"CCGTD1_IPS",TT_FinMile,"58306",-,-,-,100,TK_Complete,18/11/2019,22/11/2019,18/11/2019,22/11/2019,"10HAD80-90 FS","10HAD80-90","SC1240 FS,SC1230 FS,SC1110 FS","SC1240,SC1230,SC1110",224,262,224,262,52,61,52,61,82,,"CCGT D1_Integrated Programme Schedule;M&E;Milestones;Turnover Package (TOP)",1,3,0.0000039837,0.0018311292,0.0166836216,0,1.0,0.0000812387,0.0068493151,0.0092307692,0.0060135417,0.0046997389,0.0527670528,0.0,1.0,0.0
1.3.4.3-35,TOP1860,"(TOP-10HAA) HRSG Condensate Preheating System",7112,"CCGTD1_IPS",TT_FinMile,"58306",-,-,-,100,TK_Complete,11/11/2019,11/11/2019,11/11/2019,11/11/2019,"10HAA90 FS","10HAA90","SC1240 FS,SC1110 FS,SC1230 FS","SC1240,SC1110,SC1230",223,260,223,260,52,60,52,60,82,,"CCGT D1_Integrated Programme Schedule;M&E;Milestones;Turnover Package (TOP)",1,3,0.0000034489,0.0018311292,0.0036622584,0,1.0,0.0000812387,0.0068493151,0.0092307692,0.00520625,0.0046997389,0.0115830116,0.0,1.0,0.0
1.3.4.3-36,TOP1870,"(TOP-10HBK) HRSG Exhaust Gas System",7112,"CCGTD1_IPS",TT_FinMile,"58306",-,-,-,100,TK_Complete,08/11/2019,21/11/2019,08/11/2019,21/11/2019,"ECS20.1190 FS,ADD_BY_CLP_01 FS","ECS20.1190,ADD_BY_CLP_01","SC1230 FS,SC1240 FS","SC1230,SC1240",223,261,223,261,52,61,52,61,81,,"CCGT D1_Integrated Programme Schedule;M&E;Milestones;Turnover Package (TOP)",2,2,0.0000033123,0.0016276704,0.0093591048,0,1.0,0.0000812387,0.0136986301,0.0061538462,0.005,0.0041775457,0.0296010296,0.0,1.0,0.0
1.3.4.3-37,TOP1880,"(TOP-00LBG) Auxiliary Steam System Common Area",7112,"CCGTD1_IPS",TT_FinMile,"58306",-,-,-,100,TK_Complete,06/11/2019,26/11/2019,06/11/2019,26/11/2019,"00LBG90 FS","00LBG90","SC1240 FS,SC1230 FS,SC1170 FS","SC1240,SC1230,SC1170",223,262,223,262,52,61,52,61,81,,"CCGT D1_Integrated Programme Schedule;M&E;Milestones;Turnover Package (TOP)",1,3,0.0000037264,0.002034588,0.004069176,0,1.0,0.0000812387,0.0068493151,0.0092307692,0.005625,0.0052219321,0.0128700129,0.0,1.0,0.0
1.3.4.3-38,TOP1890,"(TOP-10GM-02) Plant Drainage System for 10U HW",7112,"CCGTD1_IPS",TT_FinMile,"58306",-,-,-,100,TK_Complete,07/04/2020,20/12/2019,07/04/2020,20/12/2019,"10GM-02-170 FS,10GM-02-90 FS","10GM-02-170,10GM-02-90","","",244,266,244,266,57,62,57,62,90,,"CCGT D1_Integrated Programme Schedule;M&E;Milestones;Turnover Package (TOP)",2,0,0.0,0.0,0.0052899288,0,1.0,0.0000812387,0.0136986301,0.0,0.0,0.0,0.0167310167,0.0,1.0,0.0
1.3.4.3-39,TOP1900,"(TOP-10LBH) Start-up and Shutdown Steam System incl. Drains System",7112,"CCGTD1_IPS",TT_FinMile,"58306",-,-,-,100,TK_Complete,04/11/2019,19/11/2019,04/11/2019,19/11/2019,"10MA1460 FS","10MA1460","SC1230 FS,SC1240 FS","SC1230,SC1240",222,261,222,261,51,61,51,61,81,,"CCGT D1_Integrated Programme Schedule;M&E;Milestones;Turnover Package (TOP)",1,2,0.0000011593,0.0016276704,0.0150559512,0,1.0,0.0000812387,0.0068493151,0.0061538462,0.00175,0.0041775457,0.0476190476,0.0,1.0,0.0
1.3.4.3-40,TOP1910,"(TOP-10LCL) HRSG Drains System",7112,"CCGTD1_IPS",TT_FinMile,"58306",-,-,-,100,TK_Complete,07/11/2019,15/11/2019,07/11/2019,15/11/2019,"10LCL90 FS","10LCL90","SC1240 FS,SC1110 FS,SC1230 FS,SC1170 FS","SC1240,SC1110,SC1230,SC1170",223,261,223,261,52,60,52,60,81,,"CCGT D1_Integrated Programme Schedule;M&E;Milestones;Turnover Package (TOP)",1,4,0.0000048029,0.0022380468,0.0115971516,0,1.0,0.0000812387,0.0068493151,0.0123076923,0.00725,0.0057441253,0.0366795367,0.0,1.0,0.0
1.3.4.3-41,TOP1920,"(TOP-10LCA-02) Condensate Supply System incl. Preheater 10HAA10",7112,"CCGTD1_IPS",TT_FinMile,"58306",-,-,-,100,TK_Complete,11/11/2019,11/11/2019,11/11/2019,11/11/2019,"10LCA-02-90 FS","10LCA-02-90","SC1240 FS,SC1230 FS,SC1170 FS","SC1240,SC1230,SC1170",223,260,223,260,52,60,52,60,82,,"CCGT D1_Integrated Programme Schedule;M&E;Milestones;Turnover Package (TOP)",1,3,0.0000045544,0.002034588,0.0150559512,0,1.0,0.0000812387,0.0068493151,0.0092307692,0.006875,0.0052219321,0.0476190476,0.0,1.0,0.0
1.3.4.3-42,TOP1930,"(TOP-10LAB) HP/IP Feedwater Supply System",7112,"CCGTD1_IPS",TT_FinMile,"58306",-,-,-,100,TK_Complete,11/11/2019,04/11/2019,11/11/2019,04/11/2019,"10LAB90 FS,00LAB90 FS","10LAB90,00LAB90","SC1110 FS,SC1240 FS,SC1230 FS,SC1170 FS,CCOM2740 FS","SC1110,SC1240,SC1230,SC1170,CCOM2740",223,259,223,259,52,60,52,60,82,,"CCGT D1_Integrated Programme Schedule;M&E;Milestones;Turnover Package (TOP)",2,5,0.0000288767,0.0028484232,0.0246185148,0,1.0,0.0000812387,0.0136986301,0.0153846154,0.0435899802,0.007310705,0.0778635779,0.0,1.0,0.0
1.3.4.3-43,TOP1940,"(TOP-10LAC) Feedwater Pump",7112,"CCGTD1_IPS",TT_FinMile,"58306",-,-,-,100,TK_Complete,11/11/2019,14/11/2019,11/11/2019,14/11/2019,"10LAC90 FS","10LAC90","SC1240 FS,SC1230 FS,SC1170 FS","SC1240,SC1230,SC1170",223,260,223,260,52,60,52,60,82,,"CCGT D1_Integrated Programme Schedule;M&E;Milestones;Turnover Package (TOP)",1,3,0.000006244,0.002034588,0.0201424212,0,1.0,0.0000812387,0.0068493151,0.0092307692,0.0094254884,0.0052219321,0.0637065637,0.0,1.0,0.0
1.3.4.3-44,TOP1950,"(TOP-10QCB) Hydrazine Dosing QC",7112,"CCGTD1_IPS",TT_FinMile,"58306",-,-,-,100,TK_Complete,11/11/2019,26/11/2019,11/11/2019,26/11/2019,"10QCB60 FS","10QCB60","SC1240 FS,SC1230 FS","SC1240,SC1230",223,262,223,262,52,61,52,61,82,,"CCGT D1_Integrated Programme Schedule;M&E;Milestones;Turnover Package (TOP)",1,2,0.0000016562,0.0016276704,0.0018311292,0,1.0,0.0000812387,0.0068493151,0.0061538462,0.0025,0.0041775457,0.0057915058,0.0,1.0,0.0
1.3.4.3-45,TOP1960,"(TOP-10QCC) Trisodiumphosphate Dosing QC",7112,"CCGTD1_IPS",TT_FinMile,"58306",-,-,-,100,TK_Complete,07/04/2020,03/12/2019,07/04/2020,03/12/2019,"10QCC60 FS","10QCC60","SC1240 FS,SC1230 FS","SC1240,SC1230",244,263,244,263,57,61,57,61,90,,"CCGT D1_Integrated Programme Schedule;M&E;Milestones;Turnover Package (TOP)",1,2,0.0000019874,0.0016276704,0.0189216684,0,1.0,0.0000812387,0.0068493151,0.0061538462,0.003,0.0041775457,0.0598455598,0.0,1.0,0.0
1.3.4.3-46,TOP1970,"(TOP-10QCD) Ammonia Dosing QC",7112,"CCGTD1_IPS",TT_FinMile,"58306",-,-,-,100,TK_Complete,07/04/2020,03/12/2019,07/04/2020,03/12/2019,"10QCD60 FS","10QCD60","SC1240 FS,SC1230 FS","SC1240,SC1230",244,263,244,263,57,61,57,61,90,,"CCGT D1_Integrated Programme Schedule;M&E;Milestones;Turnover Package (TOP)",1,2,0.0000019874,0.0016276704,0.0189216684,0,1.0,0.0000812387,0.0068493151,0.0061538462,0.003,0.0041775457,0.0598455598,0.0,1.0,0.0
1.3.4.3-47,TOP1980,"(TOP-10QU) Sampling Container QU",7112,"CCGTD1_IPS",TT_FinMile,"58306",-,-,-,100,TK_Complete,07/04/2020,20/01/2020,07/04/2020,20/01/2020,"10QU60 FS","10QU60","SC1230 FS,SC1240 FS","SC1230,SC1240",244,270,244,270,57,63,57,63,90,,"CCGT D1_Integrated Programme Schedule;M&E;Milestones;Turnover Package (TOP)",1,2,0.0000021944,0.0016276704,0.0282807731,0,1.0,0.0000812387,0.0068493151,0.0061538462,0.0033125,0.0041775457,0.0894465894,0.0,1.0,0.0
1.3.4.3-48,TOP2000,"(TOP-10HSJ) Reduction Agent Supply System for SCR",7112,"CCGTD1_IPS",TT_FinMile,"58306",-,-,-,100,TK_Complete,13/04/2020,19/01/2020,13/04/2020,19/01/2020,"10HSJ130 FS","10HSJ130","SC1240 FS,SC1230 FS","SC1240,SC1230",245,270,245,270,57,63,57,63,91,,"CCGT D1_Integrated Programme Schedule;M&E;Milestones;Turnover Package (TOP)",1,2,0.0000019874,0.0016276704,0.0063072228,0,1.0,0.0000812387,0.0068493151,0.0061538462,0.003,0.0041775457,0.0199485199,0.0,1.0,0.0
1.3.4.3-49,TOP2010,"(TOP-10EKT20) Fuel Gas Preheating System 10EKT20",7112,"CCGTD1_IPS",TT_FinMile,"58306",-,-,-,100,TK_Complete,11/11/2019,27/11/2019,11/11/2019,27/11/2019,"10EKT20-80 FS","10EKT20-80","SC1230 FS,SC1160 FS,SC1240 FS,SC1170 FS,SC1080 FS","SC1230,SC1160,SC1240,SC1170,SC1080",223,262,223,262,52,61,52,61,82,,"CCGT D1_Integrated Programme Schedule;M&E;Milestones;Turnover Package (TOP)",1,5,0.0000087014,0.0024415056,0.0095625636,0,1.0,0.0000812387,0.0068493151,0.0153846154,0.0131348634,0.0062663185,0.0302445302,0.0,1.0,0.0
1.3.4.3-50,TOP2020,"(TOP-10GHC) Demineralised Water Distribution System Inside 10UMC",7112,"CCGTD1_IPS",TT_FinMile,"58306",-,-,-,100,TK_Complete,30/09/2019,12/09/2019,30/09/2019,12/09/2019,"10GHC80 FS","10GHC80","SC1240 FS,SC1230 FS","SC1240,SC1230",217,251,217,251,50,58,50,58,77,,"CCGT D1_Integrated Programme Schedule;M&E;Milestones;Turnover Package (TOP)",1,2,0.0000026775,0.0016276704,0.0205493388,0,1.0,0.0000812387,0.0068493151,0.0061538462,0.0040416667,0.0041775457,0.064993565,0.0,1.0,0.0
1.3.4.3-51,TOP2050,"(TOP-10LBA10) HP Main Steam System",7112,"CCGTD1_IPS",TT_FinMile,"58306",-,-,-,100,TK_Complete,05/11/2019,28/11/2019,05/11/2019,28/11/2019,"10LBA10-90 FS","10LBA10-90","SC1230 FS,SC1240 FS,SC1170 FS","SC1230,SC1240,SC1170",222,262,222,262,52,61,52,61,81,,"CCGT D1_Integrated Programme Schedule;M&E;Milestones;Turnover Package (TOP)",1,3,0.0000058255,0.002034588,0.0264496439,0,1.0,0.0000812387,0.0068493151,0.0092307692,0.00879375,0.0052219321,0.0836550837,0.0,1.0,0.0
1.3.4.3-52,TOP2060,"(TOP-10LBA80) LP Main Steam System",7112,"CCGTD1_IPS",TT_FinMile,"58306",-,-,-,100,TK_Complete,11/11/2019,28/11/2019,11/11/2019,28/11/2019,"10LBA80-90 FS","10LBA80-90","SC1230 FS,SC1240 FS,SC1170 FS","SC1230,SC1240,SC1170",223,262,223,262,52,61,52,61,82,,"CCGT D1_Integrated Programme Schedule;M&E;Milestones;Turnover Package (TOP)",1,3,0.0000037567,0.002034588,0.0146490336,0,1.0,0.0000812387,0.0068493151,0.0092307692,0.0056708333,0.0052219321,0.0463320463,0.0,1.0,0.0
1.3.4.3-53,TOP2070,"(TOP-10LBB) Cold and Hot Reheat System 10LBB / 10LBC",7112,"CCGTD1_IPS",TT_FinMile,"58306",-,-,-,100,TK_Complete,15/11/2019,29/11/2019,15/11/2019,29/11/2019,"10LBB90 FS,10LBC90 FS","10LBB90,10LBC90","SC1240 FS,SC1230 FS,SC1170 FS","SC1240,SC1230,SC1170",224,263,224,263,52,61,52,61,82,,"CCGT D1_Integrated Programme Schedule;M&E;Milestones;Turnover Package (TOP)",2,3,0.0000083029,0.002034588,0.006103764,0,1.0,0.0000812387,0.0136986301,0.0092307692,0.0125333333,0.0052219321,0.0193050193,0.0,1.0,0.0
1.3.4.3-54,TOP2080,"(TOP-00LBG) Auxiliary Steam System",7112,"CCGTD1_IPS",TT_FinMile,"58306",-,-,-,100,TK_Complete,08/11/2019,28/11/2019,08/11/2019,28/11/2019,"10LBG90 FS","10LBG90","SC1240 FS,SC1230 FS,SC1110 FS,SC1170 FS","SC1240,SC1230,SC1110,SC1170",223,262,223,262,52,61,52,61,81,,"CCGT D1_Integrated Programme Schedule;M&E;Milestones;Turnover Package (TOP)",1,4,0.0000055564,0.0022380468,0.0034587996,0,1.0,0.0000812387,0.0068493151,0.0123076923,0.0083875,0.0057441253,0.0109395109,0.0,1.0,0.0
1.3.4.3-55,TOP2090,"(TOP-10MAJ) ST Evacuation System",7112,"CCGTD1_IPS",TT_FinMile,"58306",-,-,-,100,TK_Complete,04/11/2019,22/10/2019,04/11/2019,22/10/2019,"10MAJ90 FS","10MAJ90","SC1240 FS,SC1070 FS,SC1230 FS","SC1240,SC1070,SC1230",222,257,222,257,51,60,51,60,81,,"CCGT D1_Integrated Programme Schedule;M&E;Milestones;Turnover Package (TOP)",1,3,0.0000034779,0.002034588,0.0168870804,0,1.0,0.0000812387,0.0068493151,0.0092307692,0.00525,0.0052219321,0.0534105534,0.0,1.0,0.0
1.3.4.3-56,TOP2100,"(TOP-10PAH) Condenser Tube Cleaning System",7112,"CCGTD1_IPS",TT_FinMile,"58306",-,-,-,100,TK_Complete,09/04/2020,18/12/2019,09/04/2020,18/12/2019,"10PAH90 FS","10PAH90","SC1080 FS,SC1240 FS,SC1230 FS","SC1080,SC1240,SC1230",245,265,245,265,57,62,57,62,91,,"CCGT D1_Integrated Programme Schedule;M&E;Milestones;Turnover Package (TOP)",1,3,0.0000078007,0.002034588,0.0282807731,0,1.0,0.0000812387,0.0068493151,0.0092307692,0.0117752404,0.0052219321,0.0894465894,0.0,1.0,0.0
1.3.4.3-57,TOP2110,"(TOP-00BZL-01) L&SP Iincl. BMZ 00 IN UBA 81 Area (Civil Contractor)",7112,"CCGTD1_IPS",TT_FinMile,"58306",-,-,-,100,TK_Complete,30/03/2020,05/02/2020,30/03/2020,05/02/2020,"00BZL-01-40 FS","00BZL-01-40","SC1240 FS,SC1230 FS","SC1240,SC1230",243,272,243,272,56,63,56,63,90,,"CCGT D1_Integrated Programme Schedule;M&E;Milestones;Turnover Package (TOP)",1,2,0.0000009937,0.0016276704,0.006103764,0,1.0,0.0000812387,0.0068493151,0.0061538462,0.0015,0.0041775457,0.0193050193,0.0,1.0,0.0
1.3.4.3-58,TOP2120,"(TOP-10PAB-01) Circulating Water System incl. Cooling Water Pumps",7112,"CCGTD1_IPS",TT_FinMile,"58306",-,-,-,100,TK_Complete,08/04/2020,13/12/2019,08/04/2020,13/12/2019,"10PAB-01-90 FS","10PAB-01-90","SC1230 FS,SC1080 FS,SC1240 FS,SC1170 FS","SC1230,SC1080,SC1240,SC1170",245,265,245,265,57,61,57,61,91,,"CCGT D1_Integrated Programme Schedule;M&E;Milestones;Turnover Package (TOP)",1,4,0.0000061469,0.0022380468,0.0052899288,0,1.0,0.0000812387,0.0068493151,0.0123076923,0.0092788366,0.0057441253,0.0167310167,0.0,1.0,0.0
1.3.4.3-59,TOP2130,"(TOP-00PAA) Cooling Water Screening Plant",7112,"CCGTD1_IPS",TT_FinMile,"58306",-,-,-,100,TK_Complete,30/03/2020,05/12/2019,30/03/2020,05/12/2019,"00PAA90 FS","00PAA90","SC1230 FS,SC1080 FS,SC1240 FS","SC1230,SC1080,SC1240",243,263,243,263,56,61,56,61,90,,"CCGT D1_Integrated Programme Schedule;M&E;Milestones;Turnover Package (TOP)",1,3,0.0000049685,0.002034588,0.0144455748,0,1.0,0.0000812387,0.0068493151,0.0092307692,0.0075,0.0052219321,0.0456885457,0.0,1.0,0.0
1.3.4.3-60,TOP2140,"(TOP-00PUR) Cathodic Protection System for Cooling Water Inlet",7112,"CCGTD1_IPS",TT_FinMile,"58306",-,-,-,100,TK_Complete,30/03/2020,16/12/2019,30/03/2020,16/12/2019,"00UPR60 FS","00UPR60","SC1240 FS,SC1230 FS,SC1080 FS","SC1240,SC1230,SC1080",243,265,243,265,56,61,56,61,90,,"CCGT D1_Integrated Programme Schedule;M&E;Milestones;Turnover Package (TOP)",1,3,0.0000026913,0.002034588,0.0130213632,0,1.0,0.0000812387,0.0068493151,0.0092307692,0.0040625,0.0052219321,0.0411840412,0.0,1.0,0.0
1.3.4.3-61,TOP2160,"(TOP-10PUR) Cathodic Protection System for Cooling Water Side of Condenser",7112,"CCGTD1_IPS",TT_FinMile,"58306",-,-,-,100,TK_Complete,30/03/2020,09/12/2019,30/03/2020,09/12/2019,"10PUR60 FS","10PUR60","SC1230 FS,SC1240 FS","SC1230,SC1240",243,264,243,264,56,61,56,61,90,,"CCGT D1_Integrated Programme Schedule;M&E;Milestones;Turnover Package (TOP)",1,2,0.000002153,0.0016276704,0.0258392675,0,1.0,0.0000812387,0.0068493151,0.0061538462,0.00325,0.0041775457,0.0817245817,0.0,1.0,0.0
1.3.4.3-62,TOP2190,"(TOP-00GHC-02) Demineralised Water Supply System up to UMC",7112,"CCGTD1_IPS",TT_FinMile,"58306",-,-,-,100,TK_Complete,30/09/2019,12/09/2019,30/09/2019,12/09/2019,"00GHC-02-80 FS","00GHC-02-80","SC1240 FS,SC1230 FS,SC1170 FS","SC1240,SC1230,SC1170",217,251,217,251,50,58,50,58,77,,"CCGT D1_Integrated Programme Schedule;M&E;Milestones;Turnover Package (TOP)",1,3,0.0000033654,0.002034588,0.0146490336,0,1.0,0.0000812387,0.0068493151,0.0092307692,0.0050802083,0.0052219321,0.0463320463,0.0,1.0,0.0
1.3.4.3-63,TOP2250,"(TOP-00SGA-01) Fire Pump Station, Ring Main, Outdoor Hydrants  TEMP FIRE SUPPLY (REQUIRED DATE TO BE CLARIFIED)",7112,"CCGTD1_IPS",TT_FinMile,"58306",-,-,-,100,TK_Complete,14/04/2020,18/01/2020,14/04/2020,18/01/2020,"10SGA-02-60 FS,00SGA-01-80 FS","10SGA-02-60,00SGA-01-80","SC1240 FS,SC1230 FS","SC1240,SC1230",245,270,245,270,57,63,57,63,91,,"CCGT D1_Integrated Programme Schedule;M&E;Milestones;Turnover Package (TOP)",2,2,0.0000026499,0.0016276704,0.0089521872,0,1.0,0.0000812387,0.0136986301,0.0061538462,0.004,0.0041775457,0.0283140283,0.0,1.0,0.0
1.3.4.3-64,TOP2260,"(TOP-00STG) Laboratory Container STG",7112,"CCGTD1_IPS",TT_FinMile,"58306",-,-,-,100,TK_Complete,07/04/2020,11/12/2019,07/04/2020,11/12/2019,"00STG60 FS","00STG60","SC1240 FS,SC1230 FS","SC1240,SC1230",244,264,244,264,57,61,57,61,90,,"CCGT D1_Integrated Programme Schedule;M&E;Milestones;Turnover Package (TOP)",1,2,0.0000019874,0.0016276704,0.0187182096,0,1.0,0.0000812387,0.0068493151,0.0061538462,0.003,0.0041775457,0.0592020592,0.0,1.0,0.0
1.3.4.3-65,TOP2270,"(TOP-00EK) Fuel Gas Conditioning System EKD (incl. Fuel Gas Supply for QHA)",7112,"CCGTD1_IPS",TT_FinMile,"58306",-,-,-,100,TK_Complete,30/03/2020,28/12/2019,30/03/2020,28/12/2019,"00EK80 FS,TOP1370 FS","00EK80,TOP1370","SC1240 FS,SC1230 FS,SC1170 FS","SC1240,SC1230,SC1170",243,267,243,267,56,62,56,62,90,,"CCGT D1_Integrated Programme Schedule;M&E;Milestones;Turnover Package (TOP)",2,3,0.0000066246,0.002034588,0.0278738555,0,1.0,0.0000812387,0.0136986301,0.0092307692,0.01,0.0052219321,0.0881595882,0.0,1.0,0.0
1.3.4.3-66,TOP2280,"(TOP-10SGC-02) FF Spray Deluge System for BOP Systems",7112,"CCGTD1_IPS",TT_FinMile,"58306",-,-,-,100,TK_Complete,09/04/2020,15/01/2020,09/04/2020,15/01/2020,"10SGA-02-50 FS","10SGA-02-50","SC1230 FS,SC1240 FS","SC1230,SC1240",245,269,245,269,57,62,57,62,91,,"CCGT D1_Integrated Programme Schedule;M&E;Milestones;Turnover Package (TOP)",1,2,0.0000008281,0.0016276704,0.0128179044,0,1.0,0.0000812387,0.0068493151,0.0061538462,0.00125,0.0041775457,0.0405405405,0.0,1.0,0.0
1.3.4.3-67,TOP2290,"(TOP-00SCB) Compressed air Distribution System Overall Plant",7112,"CCGTD1_IPS",TT_FinMile,"58306",-,-,-,100,TK_Complete,31/10/2019,04/10/2019,31/10/2019,04/10/2019,"00SCB90 FS","00SCB90","SC1240 FS,SC1230 FS,CCOM1940 FS","SC1240,SC1230,CCOM1940",222,255,222,255,51,59,51,59,80,,"CCGT D1_Integrated Programme Schedule;M&E;Milestones;Turnover Package (TOP)",1,3,0.0000052997,0.0032553408,0.0016276704,0,1.0,0.0000812387,0.0068493151,0.0092307692,0.008,0.0083550914,0.0051480051,0.0,1.0,0.0
1.3.4.3-68,TOP2300,"(TOP-00EG-01) Fuel Oil Forwarding Station and Storage Tank",7112,"CCGTD1_IPS",TT_FinMile,"58306",-,-,-,100,TK_Complete,11/11/2019,26/10/2019,11/11/2019,26/10/2019,"00EG-01-90 FS","00EG-01-90","SC1240 FS,SC1230 FS","SC1240,SC1230",223,258,223,258,52,60,52,60,82,,"CCGT D1_Integrated Programme Schedule;M&E;Milestones;Turnover Package (TOP)",1,2,0.0000027701,0.0016276704,0.0199389624,0,1.0,0.0000812387,0.0068493151,0.0061538462,0.0041814904,0.0041775457,0.0630630631,0.0,1.0,0.0
1.3.4.3-69,TOP2310,"(TOP-00EG-02) Fuel Oil Forwarding System incl. Supply Lines up to Fuel Oil",7112,"CCGTD1_IPS",TT_FinMile,"58306",-,-,-,100,TK_Complete,30/03/2020,27/03/2020,30/03/2020,27/03/2020,"00EG-02-80 FS","00EG-02-80","SC1230 FS,SC1240 FS,SC1170 FS","SC1230,SC1240,SC1170",243,280,243,280,56,65,56,65,90,,"CCGT D1_Integrated Programme Schedule;M&E;Milestones;Turnover Package (TOP)",1,3,0.000004144,0.002034588,0.0097660224,0,1.0,0.0000812387,0.0068493151,0.0092307692,0.0062553991,0.0052219321,0.0308880309,0.0,1.0,0.0
1.3.4.3-70,TOP2330,"(TOP-00CR) Control Room Equipment",7112,"CCGTD1_IPS",TT_FinMile,"58306",-,-,-,100,TK_Complete,31/07/2019,16/07/2019,31/07/2019,16/07/2019,"00CR60 FS,00CR100 FS,A3310 FS,00CR20 FS,00CR70 FS,00CR80 FS,00CR50 FS,A3300 FS,00CR40 FS,00CR30 FS","00CR60,00CR100,A3310,00CR20,00CR70,00CR80,00CR50,A3300,00CR40,00CR30","SC1230 FS,SC1240 FS","SC1230,SC1240",209,243,209,243,48,56,48,56,67,,"CCGT D1_Integrated Programme Schedule;M&E;Milestones;Turnover Package (TOP)",10,2,0.000006045,0.0016276704,0.01017294,0,1.0,0.0000812387,0.0684931507,0.0061538462,0.009125,0.0041775457,0.0321750322,0.0,1.0,0.0
1.3.4.3-71,TOP2350,"(TOP-00CY) Communication System in 00UCA (00CY-01_19Jan20 / 00CY-02_27Feb20)",7112,"CCGTD1_IPS",TT_FinMile,"58306",-,-,-,100,TK_Complete,30/03/2020,27/02/2020,30/03/2020,27/02/2020,"00CY50 FS","00CY50","SC1240 FS,SC1230 FS","SC1240,SC1230",243,275,243,275,56,64,56,64,90,,"CCGT D1_Integrated Programme Schedule;M&E;Milestones;Turnover Package (TOP)",1,2,0.0000016562,0.0016276704,0.0065106816,0,1.0,0.0000812387,0.0068493151,0.0061538462,0.0025,0.0041775457,0.0205920206,0.0,1.0,0.0
1.3.4.3-72,TOP2360,"(TOP-10AC) HV Switchgear Including Cable Connection and Lighting and Small",7112,"CCGTD1_IPS",TT_FinMile,"58306",-,-,-,100,TK_Complete,02/09/2019,07/08/2019,02/09/2019,07/08/2019,"10AC60 FS","10AC60","SC1180 FS,SC1240 FS,SC1230 FS,SC1210 FS,SC1190 FS","SC1180,SC1240,SC1230,SC1210,SC1190",213,246,213,246,49,57,49,57,74,,"CCGT D1_Integrated Programme Schedule;M&E;Milestones;Turnover Package (TOP)",1,5,0.0000024842,0.0026449644,0.0075279756,0,1.0,0.0000812387,0.0068493151,0.0153846154,0.00375,0.0067885117,0.0238095238,0.0,1.0,0.0
1.3.4.3-73,TOP2370,"(TOP-10CYE) Fire Detection System for GT Noise Enclosure MPB",7112,"CCGTD1_IPS",TT_FinMile,"58306",-,-,-,100,TK_Complete,13/04/2020,09/01/2020,13/04/2020,09/01/2020,"FSS22.1180 FS,SI-CYE4-58 FS,SI-SG-4-56 FS,10MBA1067 FS","FSS22.1180,SI-CYE4-58,SI-SG-4-56,10MBA1067","SC1220 FS,SC1240 FS,SC1230 FS","SC1220,SC1240,SC1230",245,268,245,268,57,62,57,62,91,,"CCGT D1_Integrated Programme Schedule;M&E;Milestones;Turnover Package (TOP)",4,3,0.0000014353,0.002034588,0.0014242116,0,1.0,0.0000812387,0.0273972603,0.0092307692,0.0021666667,0.0052219321,0.0045045045,0.0,1.0,0.0
1.3.4.3-74,TOP1030,"(TOP-10BZL-03)  L&SP Incl. BMZ in UBA and UBF and UBE",7112,"CCGTD1_IPS",TT_FinMile,"58306",-,-,-,100,TK_Complete,17/12/2019,05/02/2020,17/12/2019,05/02/2020,"10BZL-03-50 FS","10BZL-03-50","SC1240 FS,SC1230 FS","SC1240,SC1230",228,272,228,272,53,63,53,63,85,,"CCGT D1_Integrated Programme Schedule;M&E;Milestones;Turnover Package (TOP)",1,2,0.0000003312,0.0016276704,0.0002034588,0,1.0,0.0000812387,0.0068493151,0.0061538462,0.0005,0.0041775457,0.0006435006,0.0,1.0,0.0
1.3.4.3-75,TOP1040,"(TOP-10CY) Communication / Security Systems 10  (Is it same as TOP-00CY-02 and TOP-00CY-01)",7112,"CCGTD1_IPS",TT_FinMile,"58306",-,-,-,100,TK_Complete,31/12/2019,19/01/2020,31/12/2019,19/01/2020,"10CY50 FS,CP-CYP7A45 FS","10CY50,CP-CYP7A45","SC1230 FS,SC1240 FS","SC1230,SC1240",230,270,230,270,53,63,53,63,86,,"CCGT D1_Integrated Programme Schedule;M&E;Milestones;Turnover Package (TOP)",2,2,0.0000036435,0.0016276704,0.0075279756,0,1.0,0.0000812387,0.0136986301,0.0061538462,0.0055,0.0041775457,0.0238095238,0.0,1.0,0.0
1.3.4.3-76,TOP1060,"(TOP-10GM-03) Plant Drainage System Pump for UGD (incl. UGU)",7112,"CCGTD1_IPS",TT_FinMile,"58306",-,-,-,100,TK_Complete,03/04/2020,20/12/2019,03/04/2020,20/12/2019,"00GM-03-80 FS","00GM-03-80","SC1240 FS,SC1230 FS","SC1240,SC1230",244,266,244,266,57,62,57,62,90,,"CCGT D1_Integrated Programme Schedule;M&E;Milestones;Turnover Package (TOP)",1,2,0.0000033123,0.0016276704,0.0140386572,0,1.0,0.0000812387,0.0068493151,0.0061538462,0.005,0.0041775457,0.0444015444,0.0,1.0,0.0
1.3.4.3-77,TOP1070,"(TOP-10GHD-02) Service Water Distribution Inside Power Block",7112,"CCGTD1_IPS",TT_FinMile,"58306",-,-,-,100,TK_Complete,30/03/2020,21/02/2020,30/03/2020,21/02/2020,"00GHD-02-80 FS","00GHD-02-80","SC1240 FS,SC1230 FS","SC1240,SC1230",243,275,243,275,56,64,56,64,90,,"CCGT D1_Integrated Programme Schedule;M&E;Milestones;Turnover Package (TOP)",1,2,0.0000030266,0.0016276704,0.0136317396,0,1.0,0.0000812387,0.0068493151,0.0061538462,0.00456875,0.0041775457,0.0431145431,0.0,1.0,0.0
1.3.4.3-78,TOP1080,"(TOP-10GKB-02) Drinking Water Distribution Inside Power Block",7112,"CCGTD1_IPS",TT_FinMile,"58306",-,-,-,100,TK_Complete,30/03/2020,21/02/2020,30/03/2020,21/02/2020,"00GKB-02-80 FS","00GKB-02-80","SC1240 FS,SC1230 FS","SC1240,SC1230",243,275,243,275,56,64,56,64,90,,"CCGT D1_Integrated Programme Schedule;M&E;Milestones;Turnover Package (TOP)",1,2,0.0000026499,0.0016276704,0.0140386572,0,1.0,0.0000812387,0.0068493151,0.0061538462,0.004,0.0041775457,0.0444015444,0.0,1.0,0.0
1.3.4.3-79,TOP1090,"(TOP-10GM-02) Plant Drainage System for 10U MC   *LCAL",7112,"CCGTD1_IPS",TT_FinMile,"58306",-,-,-,100,TK_Complete,17/12/2019,20/12/2019,17/12/2019,20/12/2019,"10GM-02-90 FS","10GM-02-90","SC1300 FS,TOP2830 FS","SC1300,TOP2830",228,266,228,266,53,62,53,62,85,,"CCGT D1_Integrated Programme Schedule;M&E;Milestones;Turnover Package (TOP)",1,2,0.0000012007,0.0004069176,0.0036622584,0,1.0,0.0000812387,0.0068493151,0.0061538462,0.0018125,0.0010443864,0.0115830116,0.0,1.0,0.0
1.3.4.3-80,TOP1100,"(TOP-10MA-01) HP / IP / LP Turbine 10MAA/MAB/MAC",7112,"CCGTD1_IPS",TT_FinMile,"58306",-,-,-,100,TK_Complete,17/12/2019,16/11/2019,17/12/2019,16/11/2019,"10MAC-1350 FS,10MA-1660 FS,10MA-1650 FS,10MA-1670 FS","10MAC-1350,10MA-1660,10MA-1650,10MA-1670","SC1240 FS,SC1070 FS,SC1230 FS","SC1240,SC1070,SC1230",228,261,228,261,53,60,53,60,85,,"CCGT D1_Integrated Programme Schedule;M&E;Milestones;Turnover Package (TOP)",4,3,0.0000123841,0.002034588,0.0266531027,0,1.0,0.0000812387,0.0273972603,0.0092307692,0.0186940972,0.0052219321,0.0842985843,0.0,1.0,0.0
1.3.4.3-81,TOP1110,"(TOP-10MAD) ST Bearing System",7112,"CCGTD1_IPS",TT_FinMile,"58306",-,-,-,100,TK_Complete,18/09/2019,06/09/2019,18/09/2019,06/09/2019,"10MA-1660 FS,10MA-1650 FS,10MA-1670 FS","10MA-1660,10MA-1650,10MA-1670","SC1070 FS,SC1230 FS,SC1240 FS,CCOM1460 FS","SC1070,SC1230,SC1240,CCOM1460",216,251,216,251,50,58,50,58,77,,"CCGT D1_Integrated Programme Schedule;M&E;Milestones;Turnover Package (TOP)",3,4,0.0000097481,0.0022380468,0.0250254323,0,1.0,0.0000812387,0.0205479452,0.0123076923,0.0147149306,0.0057441253,0.0791505792,0.0,1.0,0.0
1.3.4.3-82,TOP1120,"(TOP-10MAL) ST Drain System",7112,"CCGTD1_IPS",TT_FinMile,"58306",-,-,-,100,TK_Complete,11/11/2019,11/11/2019,11/11/2019,11/11/2019,"10MAL90 FS","10MAL90","SC1230 FS,SC1240 FS,SC1070 FS","SC1230,SC1240,SC1070",223,260,223,260,52,60,52,60,82,,"CCGT D1_Integrated Programme Schedule;M&E;Milestones;Turnover Package (TOP)",1,3,0.0000028983,0.002034588,0.011190234,0,1.0,0.0000812387,0.0068493151,0.0092307692,0.004375,0.0052219321,0.0353925354,0.0,1.0,0.0
1.3.4.3-83,TOP1130,"(TOP-10MAN) ST Bypass System",7112,"CCGTD1_IPS",TT_FinMile,"58306",-,-,-,100,TK_Complete,21/10/2019,26/10/2019,21/10/2019,26/10/2019,"10MAN110 FS","10MAN110","SC1240 FS,SC1070 FS,SC1230 FS","SC1240,SC1070,SC1230",220,258,220,258,51,60,51,60,80,,"CCGT D1_Integrated Programme Schedule;M&E;Milestones;Turnover Package (TOP)",1,3,0.0000050806,0.002034588,0.0138351984,0,1.0,0.0000812387,0.0068493151,0.0092307692,0.0076692708,0.0052219321,0.0437580438,0.0,1.0,0.0
1.3.4.3-84,TOP1140,"(TOP-10MA-02) HP / IP / LP Steam Turbine Emergency Stop Valves and Control Valves",7112,"CCGTD1_IPS",TT_FinMile,"58306",-,-,-,100,TK_Complete,04/11/2019,09/11/2019,04/11/2019,09/11/2019,"10MA1460 FS","10MA1460","SC1070 FS,SC1230 FS,SC1240 FS","SC1070,SC1230,SC1240",222,260,222,260,51,60,51,60,81,,"CCGT D1_Integrated Programme Schedule;M&E;Milestones;Turnover Package (TOP)",1,3,0.000001739,0.002034588,0.0150559512,0,1.0,0.0000812387,0.0068493151,0.0092307692,0.002625,0.0052219321,0.0476190476,0.0,1.0,0.0
1.3.4.3-85,TOP1150,"(TOP-10MAG) Condensing System",7112,"CCGTD1_IPS",TT_FinMile,"58306",-,-,-,100,TK_Complete,11/11/2019,14/11/2019,11/11/2019,14/11/2019,"A1880 FS","A1880","SC1070 FS,SC1240 FS,SC1230 FS","SC1070,SC1240,SC1230",223,260,223,260,52,60,52,60,82,,"CCGT D1_Integrated Programme Schedule;M&E;Milestones;Turnover Package (TOP)",1,3,0.0000070162,0.002034588,0.017293998,0,1.0,0.0000812387,0.0068493151,0.0092307692,0.0105911458,0.0052219321,0.0546975547,0.0,1.0,0.0
1.3.4.3-86,TOP1160,"(TOP-10MAV) Lube and Lifting Oil system Incl. Generator and GT(10MAV01_16Aug19 / 10MAV02_05Sep19 / 10MAV03_27Mar20)",7112,"CCGTD1_IPS",TT_FinMile,"58306",-,-,-,100,TK_Complete,05/09/2019,27/03/2020,05/09/2019,27/03/2020,"10MAV90 FS","10MAV90","SC1230 FS,SC1070 FS,SC1240 FS,CCOM1455 FS","SC1230,SC1070,SC1240,CCOM1455",214,280,214,280,49,65,49,65,75,,"CCGT D1_Integrated Programme Schedule;M&E;Milestones;Turnover Package (TOP)",1,4,0.0000085216,0.0022380468,0.0189216684,0,1.0,0.0000812387,0.0068493151,0.0123076923,0.0128635417,0.0057441253,0.0598455598,0.0,1.0,0.0
1.3.4.3-87,TOP1170,"(TOP-10MAW) Gland / Leakage Steam System",7112,"CCGTD1_IPS",TT_FinMile,"58306",-,-,-,100,TK_Complete,21/10/2019,26/10/2019,21/10/2019,26/10/2019,"10MAW100 FS","10MAW100","SC1070 FS,SC1240 FS,SC1230 FS,CCOM2480 FS","SC1070,SC1240,SC1230,CCOM2480",220,258,220,258,51,60,51,60,80,,"CCGT D1_Integrated Programme Schedule;M&E;Milestones;Turnover Package (TOP)",1,4,0.0000056309,0.0028484232,0.0048830112,0,1.0,0.0000812387,0.0068493151,0.0123076923,0.0085,0.007310705,0.0154440154,0.0,1.0,0.0
1.3.4.3-88,TOP1180,"(TOP-10MAX) ST Hydraulic System",7112,"CCGTD1_IPS",TT_FinMile,"58306",-,-,-,100,TK_Complete,21/10/2019,12/10/2019,21/10/2019,12/10/2019,"10MAX90 FS","10MAX90","SC1240 FS,SC1070 FS,SC1230 FS,CCOM2110 FS","SC1240,SC1070,SC1230,CCOM2110",220,256,220,256,51,59,51,59,80,,"CCGT D1_Integrated Programme Schedule;M&E;Milestones;Turnover Package (TOP)",1,4,0.0000068786,0.0022380468,0.0189216684,0,1.0,0.0000812387,0.0068493151,0.0123076923,0.0103833333,0.0057441253,0.0598455598,0.0,1.0,0.0
1.3.4.3-89,TOP1190,"(TOP-10QFB) Control Air System for ST (10QFB01_11Nov19 / 10QFB02_05Dec19 / 10QFB03_12Feb20)",7112,"CCGTD1_IPS",TT_FinMile,"58306",-,-,-,100,TK_Complete,11/11/2019,12/02/2020,11/11/2019,12/02/2020,"10QFB90 FS","10QFB90","SC1230 FS,SC1070 FS,SC1240 FS,CCOM3130 FS","SC1230,SC1070,SC1240,CCOM3130",223,273,223,273,52,63,52,63,82,,"CCGT D1_Integrated Programme Schedule;M&E;Milestones;Turnover Package (TOP)",1,4,0.0000037678,0.0022380468,0.0022380468,0,1.0,0.0000812387,0.0068493151,0.0123076923,0.0056875,0.0057441253,0.0070785071,0.0,1.0,0.0
1.3.4.3-90,TOP1200,"(TOP-10MKA) Generator Incl. Bearing System 10MKD",7112,"CCGTD1_IPS",TT_FinMile,"58306",-,-,-,100,TK_Complete,11/11/2019,18/11/2019,11/11/2019,18/11/2019,"10MKA1290 FS","10MKA1290","SC1240 FS,SC1060-1 FS,SC1230 FS,TOP2570 FS","SC1240,SC1060-1,SC1230,TOP2570",223,261,223,261,52,61,52,61,82,,"CCGT D1_Integrated Programme Schedule;M&E;Milestones;Turnover Package (TOP)",1,4,0.0000271127,0.0026449644,0.0215666328,0,1.0,0.0000812387,0.0068493151,0.0123076923,0.0409270833,0.0067885117,0.0682110682,0.0,1.0,0.0
1.3.4.3-91,TOP1210,"(TOP-10MKF) Generator Primary Water Cooling System",7112,"CCGTD1_IPS",TT_FinMile,"58306",-,-,-,100,TK_Complete,28/10/2019,25/10/2019,28/10/2019,25/10/2019,"10MKF90 FS","10MKF90","SC1060-1 FS,SC1240 FS,SC1230 FS,CCOM2460 FS","SC1060-1,SC1240,SC1230,CCOM2460",221,258,221,258,51,60,51,60,80,,"CCGT D1_Integrated Programme Schedule;M&E;Milestones;Turnover Package (TOP)",1,4,0.0000339291,0.0034587996,0.0199389624,0,1.0,0.0000812387,0.0068493151,0.0123076923,0.0512166667,0.0088772846,0.0630630631,0.0,1.0,0.0
1.3.4.3-92,TOP1220,"(TOP-10MKG) Hydrogen Gas Supply System",7112,"CCGTD1_IPS",TT_FinMile,"58306",-,-,-,100,TK_Complete,08/11/2019,01/11/2019,08/11/2019,01/11/2019,"00MKG90 FS,10MKG90 FS","00MKG90,10MKG90","SC1240 FS,SC1060-1 FS,SC1230 FS","SC1240,SC1060-1,SC1230",223,259,223,259,52,60,52,60,81,,"CCGT D1_Integrated Programme Schedule;M&E;Milestones;Turnover Package (TOP)",2,3,0.0000099507,0.002034588,0.0327568667,0,1.0,0.0000812387,0.0136986301,0.0092307692,0.0150208333,0.0052219321,0.1036036036,0.0,1.0,0.0
1.3.4.3-93,TOP1230,"(TOP-10MKQ) Waste Gas System",7112,"CCGTD1_IPS",TT_FinMile,"58306",-,-,-,100,TK_Complete,14/10/2019,03/10/2019,14/10/2019,03/10/2019,"10MKQ90 FS","10MKQ90","SC1230 FS,SC1240 FS,SC1060-1 FS","SC1230,SC1240,SC1060-1",219,254,219,254,51,59,51,59,79,,"CCGT D1_Integrated Programme Schedule;M&E;Milestones;Turnover Package (TOP)",1,3,0.0000049878,0.002034588,0.0207527976,0,1.0,0.0000812387,0.0068493151,0.0092307692,0.0075291667,0.0052219321,0.0656370656,0.0,1.0,0.0
1.3.4.3-94,TOP1240,"(TOP-10MKW) Seal Oil Supply System",7112,"CCGTD1_IPS",TT_FinMile,"58306",-,-,-,100,TK_Complete,24/09/2019,26/08/2019,24/09/2019,26/08/2019,"10MKW80 FS,10MKW70 FS","10MKW80,10MKW70","SC1240 FS,SC1060-1 FS,SC1230 FS","SC1240,SC1060-1,SC1230",216,249,216,249,50,58,50,58,77,,"CCGT D1_Integrated Programme Schedule;M&E;Milestones;Turnover Package (TOP)",2,3,0.0000037264,0.002034588,0.0187182096,0,1.0,0.0000812387,0.0136986301,0.0092307692,0.005625,0.0052219321,0.0592020592,0.0,1.0,0.0
1.3.4.3-95,TOP1250,"(TOP-10MBV) GT Lube Oil / Lifting Oil System",7112,"CCGTD1_IPS",TT_FinMile,"58306",-,-,-,100,TK_Complete,17/09/2019,06/09/2019,17/09/2019,06/09/2019,"10MBV1090 FS","10MBV1090","SC1060-2 FS,SC1230 FS,SC1240 FS,CCOM1470 FS","SC1060-2,SC1230,SC1240,CCOM1470",215,251,215,251,50,58,50,58,77,,"CCGT D1_Integrated Programme Schedule;M&E;Milestones;Turnover Package (TOP)",1,4,0.0000155947,0.003051882,0.0075279756,0,1.0,0.0000812387,0.0068493151,0.0123076923,0.0235404266,0.0078328982,0.0238095238,0.0,1.0,0.0
1.3.4.3-96,TOP1260,"(TOP-10MBA) GT Including Combustion Chamber",7112,"CCGTD1_IPS",TT_FinMile,"58306",-,-,-,100,TK_Complete,21/11/2019,21/11/2019,21/11/2019,21/11/2019,"10MBA1370 FS","10MBA1370","SC1240 FS,SC1060-2 FS,SC1230 FS,CCOM3100 FS","SC1240,SC1060-2,SC1230,CCOM3100",225,261,225,261,52,61,52,61,82,,"CCGT D1_Integrated Programme Schedule;M&E;Milestones;Turnover Package (TOP)",1,4,0.0000319237,0.0028484232,0.0311291963,0,1.0,0.0000812387,0.0068493151,0.0123076923,0.0481894841,0.007310705,0.0984555985,0.0,1.0,0.0
1.3.4.3-97,TOP1270,"(TOP-10MBX) GT Hydraulic Oil",7112,"CCGTD1_IPS",TT_FinMile,"58306",-,-,-,100,TK_Complete,14/10/2019,28/10/2019,14/10/2019,28/10/2019,"10MBX90 FS","10MBX90","SC1060-2 FS,SC1240 FS,SC1230 FS,CCOM2560 FS","SC1060-2,SC1240,SC1230,CCOM2560",219,258,219,258,51,60,51,60,79,,"CCGT D1_Integrated Programme Schedule;M&E;Milestones;Turnover Package (TOP)",1,4,0.0000166053,0.0024415056,0.0254323499,0,1.0,0.0000812387,0.0068493151,0.0123076923,0.0250659722,0.0062663185,0.0804375804,0.0,1.0,0.0
1.3.4.3-98,TOP1280,"(TOP-10MBP) GT Natural Gas incl. Draining System MBP40",7112,"CCGTD1_IPS",TT_FinMile,"58306",-,-,-,100,TK_Complete,05/11/2019,21/11/2019,05/11/2019,21/11/2019,"10MBP90 FS","10MBP90","SC1240 FS,SC1230 FS,SC1160 FS,CCOM3090 FS","SC1240,SC1230,SC1160,CCOM3090",222,261,222,261,52,61,52,61,81,,"CCGT D1_Integrated Programme Schedule;M&E;Milestones;Turnover Package (TOP)",1,4,0.0000108846,0.0022380468,0.012207528,0,1.0,0.0000812387,0.0068493151,0.0123076923,0.0164305556,0.0057441253,0.0386100386,0.0,1.0,0.0
1.3.4.3-99,TOP1290,"(TOP-10MBN) GT Fuel Oil Injection System",7112,"CCGTD1_IPS",TT_FinMile,"58306",-,-,-,100,TK_Complete,11/11/2019,05/11/2019,11/11/2019,05/11/2019,"10MBN90 FS","10MBN90","SC1060-2 FS,SC1230 FS,SC1240 FS","SC1060-2,SC1230,SC1240",223,259,223,259,52,60,52,60,82,,"CCGT D1_Integrated Programme Schedule;M&E;Milestones;Turnover Package (TOP)",1,3,0.0000037701,0.002034588,0.0073245168,0,1.0,0.0000812387,0.0068493151,0.0092307692,0.0056909722,0.0052219321,0.0231660232,0.0,1.0,0.0
1.3.4.3-100,TOP1300,"(TOP-10MBH) GT Cooling Air System",7112,"CCGTD1_IPS",TT_FinMile,"58306",-,-,-,100,TK_Complete,23/09/2019,23/09/2019,23/09/2019,23/09/2019,"10MBH90 FS,SI1MB-4E25 FS","10MBH90,SI1MB-4E25","SC1230 FS,SC1240 FS,SC1210 FS,SC1060-2 FS","SC1230,SC1240,SC1210,SC1060-2",216,253,216,253,50,59,50,59,77,,"CCGT D1_Integrated Programme Schedule;M&E;Milestones;Turnover Package (TOP)",2,4,0.0000133389,0.0024415056,0.0187182096,0,1.0,0.0000812387,0.0136986301,0.0123076923,0.0201353175,0.0062663185,0.0592020592,0.0,1.0,0.0
1.3.4.3-101,TOP1310,"(TOP-10MBA18) Compressor Cleaning Package",7112,"CCGTD1_IPS",TT_FinMile,"58306",-,-,-,100,TK_Complete,23/09/2019,13/09/2019,23/09/2019,13/09/2019,"10MBA18-190 FS","10MBA18-190","SC1060-2 FS,SC1240 FS,SC1230 FS","SC1060-2,SC1240,SC1230",216,252,216,252,50,58,50,58,77,,"CCGT D1_Integrated Programme Schedule;M&E;Milestones;Turnover Package (TOP)",1,3,0.0000033805,0.002034588,0.0073245168,0,1.0,0.0000812387,0.0068493151,0.0092307692,0.0051029266,0.0052219321,0.0231660232,0.0,1.0,0.0
1.3.4.3-102,TOP1320,"(TOP-10MBA5x) GT Hydraulic Clearance Optimization Supply System",7112,"CCGTD1_IPS",TT_FinMile,"58306",-,-,-,100,TK_Complete,16/10/2019,23/08/2019,16/10/2019,23/08/2019,"10MBA5x90 FS","10MBA5x90","SC1240 FS,SC1060-2 FS,SC1230 FS","SC1240,SC1060-2,SC1230",220,249,220,249,51,58,51,58,79,,"CCGT D1_Integrated Programme Schedule;M&E;Milestones;Turnover Package (TOP)",1,3,0.0000042189,0.002034588,0.0079348932,0,1.0,0.0000812387,0.0068493151,0.0092307692,0.0063685516,0.0052219321,0.0250965251,0.0,1.0,0.0
1.3.4.3-103,TOP1330,"(TOP-10MBX2x) GT Pneumatic System",7112,"CCGTD1_IPS",TT_FinMile,"58306",-,-,-,100,TK_Complete,14/10/2019,29/09/2019,14/10/2019,29/09/2019,"10MBX2x90 FS","10MBX2x90","SC1060-2 FS,SC1240 FS,SC1230 FS,CCOM1780 FS","SC1060-2,SC1240,SC1230,CCOM1780",219,254,219,254,51,59,51,59,79,,"CCGT D1_Integrated Programme Schedule;M&E;Milestones;Turnover Package (TOP)",1,4,0.0000074484,0.0024415056,0.0079348932,0,1.0,0.0000812387,0.0068493151,0.0123076923,0.0112435516,0.0062663185,0.0250965251,0.0,1.0,0.0
1.3.4.3-104,TOP1340,"(TOP-10MBA4X) Blow Off System",7112,"CCGTD1_IPS",TT_FinMile,"58306",-,-,-,100,TK_Complete,14/10/2019,12/10/2019,14/10/2019,12/10/2019,"10MBA4x90 FS","10MBA4x90","SC1060-2 FS,SC1230 FS,SC1240 FS","SC1060-2,SC1230,SC1240",219,256,219,256,51,59,51,59,79,,"CCGT D1_Integrated Programme Schedule;M&E;Milestones;Turnover Package (TOP)",1,3,0.0000040071,0.002034588,0.008138352,0,1.0,0.0000812387,0.0068493151,0.0092307692,0.0060487599,0.0052219321,0.0257400257,0.0,1.0,0.0
1.3.4.3-105,TOP1350,"(TOP-00QFB) Instrument Air Distribution system",7112,"CCGTD1_IPS",TT_FinMile,"58306",-,-,-,100,TK_Complete,11/11/2019,29/11/2019,11/11/2019,29/11/2019,"00SCA180 FS","00SCA180","SC1230 FS,SC1240 FS","SC1230,SC1240",223,263,223,263,52,61,52,61,82,,"CCGT D1_Integrated Programme Schedule;M&E;Milestones;Turnover Package (TOP)",1,2,0.0000033123,0.0016276704,0.0140386572,0,1.0,0.0000812387,0.0068493151,0.0061538462,0.005,0.0041775457,0.0444015444,0.0,1.0,0.0
1.3.4.3-106,TOP1360,"(TOP-10MBL) Air Intake System",7112,"CCGTD1_IPS",TT_FinMile,"58306",-,-,-,100,TK_Complete,21/10/2019,10/10/2019,21/10/2019,10/10/2019,"10MBL1070 FS","10MBL1070","SC1230 FS,SC1240 FS","SC1230,SC1240",220,255,220,255,51,59,51,59,80,,"CCGT D1_Integrated Programme Schedule;M&E;Milestones;Turnover Package (TOP)",1,2,0.0000056677,0.0016276704,0.0158697864,0,1.0,0.0000812387,0.0068493151,0.0061538462,0.0085555556,0.0041775457,0.0501930502,0.0,1.0,0.0
1.3.4.3-107,TOP1370,"(TOP-10MBU) GT NOX Water Injection System (10MBU01_12Oct19 /10MBU02_17Oct19)",7112,"CCGTD1_IPS",TT_FinMile,"58306",-,-,-,100,TK_Complete,14/10/2019,17/10/2019,14/10/2019,17/10/2019,"10MBU90 FS","10MBU90","SC1060-2 FS,SC1240 FS,SC1230 FS,TOP2270 FS","SC1060-2,SC1240,SC1230,TOP2270",219,256,219,256,51,59,51,59,79,,"CCGT D1_Integrated Programme Schedule;M&E;Milestones;Turnover Package (TOP)",1,4,0.0000127067,0.0024415056,0.0252288911,0,1.0,0.0000812387,0.0068493151,0.0123076923,0.0191810516,0.0062663185,0.0797940798,0.0,1.0,0.0
1.3.4.3-108,TOP1380,"(TOP-10SAM30) Ventilation System for GT Enclosure and Skid Enclosures",7112,"CCGTD1_IPS",TT_FinMile,"58306",-,-,-,100,TK_Complete,15/11/2019,02/11/2019,15/11/2019,02/11/2019,"TWS06.2520 FS","TWS06.2520","SC1060-2 FS,SC1240 FS,SC1230 FS,CCOM2680 FS","SC1060-2,SC1240,SC1230,CCOM2680",224,259,224,259,52,60,52,60,82,,"CCGT D1_Integrated Programme Schedule;M&E;Milestones;Turnover Package (TOP)",1,4,0.0000009109,0.0024415056,0.001017294,0,1.0,0.0000812387,0.0068493151,0.0123076923,0.001375,0.0062663185,0.0032175032,0.0,1.0,0.0
1.3.4.3-109,TOP1390,"(TOP-10SGJ-02) FF CO2 System CYE/SGJ for GT Noise Enclosure and Gas Skid",7112,"CCGTD1_IPS",TT_FinMile,"58306",-,-,-,100,TK_Complete,07/04/2020,06/01/2020,07/04/2020,06/01/2020,"10SGJ-02-50 FS","10SGJ-02-50","SC1220 FS,SC1230 FS,SC1240 FS","SC1220,SC1230,SC1240",244,268,244,268,57,62,57,62,91,,"CCGT D1_Integrated Programme Schedule;M&E;Milestones;Turnover Package (TOP)",1,3,0.0000016562,0.002034588,0.0130213632,0,1.0,0.0000812387,0.0068493151,0.0092307692,0.0025,0.0052219321,0.0411840412,0.0,1.0,0.0
1.3.4.3-110,TOP1400,"(TOP-10CYQ) Gas Detection System",7112,"CCGTD1_IPS",TT_FinMile,"58306",-,-,-,100,TK_Complete,15/04/2020,09/01/2020,15/04/2020,09/01/2020,"A2220 FS,FSS22.1140 FS,10MBA1067 FS,ECS20.1030 FS","A2220,FSS22.1140,10MBA1067,ECS20.1030","SC1220 FS,SC1240 FS,SC1230 FS","SC1220,SC1240,SC1230",246,268,246,268,57,62,57,62,91,,"CCGT D1_Integrated Programme Schedule;M&E;Milestones;Turnover Package (TOP)",4,3,0.0000023876,0.002034588,0.0018311292,0,1.0,0.0000812387,0.0273972603,0.0092307692,0.0036041667,0.0052219321,0.0057915058,0.0,1.0,0.0
1.3.4.3-111,TOP1410,"(TOP-10LCA) Main Condensate Pumps and Supply system for Min. Flow Operation",7112,"CCGTD1_IPS",TT_FinMile,"58306",-,-,-,100,TK_Complete,30/03/2020,28/11/2019,30/03/2020,28/11/2019,"10LCA100 FS","10LCA100","SC1230 FS,SC1240 FS,SC1170 FS,CCOM3110 FS","SC1230,SC1240,SC1170,CCOM3110",243,262,243,262,56,61,56,61,90,,"CCGT D1_Integrated Programme Schedule;M&E;Milestones;Turnover Package (TOP)",1,4,0.0000065004,0.0024415056,0.0046795524,0,1.0,0.0000812387,0.0068493151,0.0123076923,0.0098125,0.0062663185,0.0148005148,0.0,1.0,0.0
1.3.4.3-112,TOP1420,"(TOP-10PGB) CCW System",7112,"CCGTD1_IPS",TT_FinMile,"58306",-,-,-,100,TK_Complete,21/10/2019,30/09/2019,21/10/2019,30/09/2019,"10PGB1090 FS","10PGB1090","SC1230 FS,SC1240 FS,CCOM1830 FS","SC1230,SC1240,CCOM1830",220,254,220,254,51,59,51,59,80,,"CCGT D1_Integrated Programme Schedule;M&E;Milestones;Turnover Package (TOP)",1,3,0.0000607428,0.00508647,0.0166836216,0,1.0,0.0000812387,0.0068493151,0.0092307692,0.0916924279,0.0130548303,0.0527670528,0.0,1.0,0.0
1.3.4.3-113,TOP1430,"(TOP-10PCB) Service Cooling Water System Incl. 10PDB",7112,"CCGTD1_IPS",TT_FinMile,"58306",-,-,-,100,TK_Complete,30/03/2020,02/01/2020,30/03/2020,02/01/2020,"10PCB90 FS,KD_G01 FS","10PCB90,KD_G01","SC1240 FS,SC1230 FS,SC1170 FS","SC1240,SC1230,SC1170",243,267,243,267,56,62,56,62,90,,"CCGT D1_Integrated Programme Schedule;M&E;Milestones;Turnover Package (TOP)",2,3,0.0000062607,0.002034588,0.017293998,0,1.0,0.0000812387,0.0136986301,0.0092307692,0.0094507116,0.0052219321,0.0546975547,0.0,1.0,0.0
1.3.4.4,58305,"New SA2 Section Milestone",7112,"CCGTD1_IPS",WBS,"58303",,,,100,Complete,12/02/2018,17/11/2017,14/04/2020,01/07/2020,,,,,132,157,245,293,30,36,57,68,,,"CCGT D1_Integrated Programme Schedule;M&E;Milestones"
1.3.4.4-1,SC1010-1,"Section 01.1 - Completion of the submission of unpriced PO to confirm the placement of Crane barge(s) > 300t",7112,"CCGTD1_IPS",TT_FinMile,"58305",-,-,-,100,TK_Complete,12/02/2018,12/01/2018,12/02/2018,12/01/2018,"MWS01.1000 FS","MWS01.1000","SC1230 FS","SC1230",132,165,132,165,30,38,30,38,18,,"CCGT D1_Integrated Programme Schedule;M&E;Milestones;New SA2 Section Milestone",1,1,0.0000003312,0.0016276704,0.0004069176,0,1.0,0.0000812387,0.0068493151,0.0030769231,0.0005,0.0041775457,0.0012870013,0.0,1.0,0.0
1.3.4.4-2,SC1020-1,"Section 02.1 - Completion of submission of Insurance certificates and policy documentation",7112,"CCGTD1_IPS",TT_FinMile,"58305",-,-,-,100,TK_Complete,15/02/2018,17/11/2017,15/02/2018,17/11/2017,"MWS02.1010 FS","MWS02.1010","HRS09.1030 FS","HRS09.1030",133,157,133,157,31,36,31,36,18,,"CCGT D1_Integrated Programme Schedule;M&E;Milestones;New SA2 Section Milestone",1,1,0.0000036849,0.0181078332,0.0004069176,0,1.0,0.0000812387,0.0068493151,0.0030769231,0.0055625,0.0464751958,0.0012870013,0.0,1.0,0.0
1.3.4.4-3,SC1030,"Section 03 - Completion of Mobilization of the crane barge to site, necessary to commence lifting",7112,"CCGTD1_IPS",TT_FinMile,"58305",-,-,-,100,TK_Complete,01/03/2018,15/03/2018,01/03/2018,15/03/2018,"MWS03.1010 FS","MWS03.1010","SC1230 FS","SC1230",135,173,135,173,31,40,31,40,19,,"CCGT D1_Integrated Programme Schedule;M&E;Milestones;New SA2 Section Milestone",1,1,0.0000003312,0.0016276704,0.0006103764,0,1.0,0.0000812387,0.0068493151,0.0030769231,0.0005,0.0041775457,0.0019305019,0.0,1.0,0.0
1.3.4.4-4,SC1050,"Section 05 - Completion of alignment checks of Steam Turbines, Generator, Compressor/ Gas Turbine",7112,"CCGTD1_IPS",TT_FinMile,"58305",-,-,-,100,TK_Complete,09/05/2019,12/04/2019,09/05/2019,12/04/2019,"10MA-1440 FS,10MAC-1270 FS,10MBA1280 FS,10MKA1220 FS,10MBA1220 FS,10MBA1230 FS","10MA-1440,10MAC-1270,10MBA1280,10MKA1220,10MBA1220,10MBA1230","","",197,230,197,230,46,53,46,53,58,,"CCGT D1_Integrated Programme Schedule;M&E;Milestones;New SA2 Section Milestone",6,0,0.0,0.0,0.0229908444,0,1.0,0.0000812387,0.0410958904,0.0,0.0,0.0,0.0727155727,0.0,1.0,0.0
1.3.4.4-5,SC1090,"Section 09 - Mechanical Completion of the HRSG Supporting frames: Structure Ready for loading of Module HRSG",7112,"CCGTD1_IPS",TT_FinMile,"58305",-,-,-,100,TK_Complete,26/07/2018,26/07/2018,26/07/2018,26/07/2018,"ECS20.1220 FS,ECS20.1230 FS","ECS20.1220,ECS20.1230","HRS10.1020 FS","HRS10.1020",156,192,156,192,36,45,36,45,33,,"CCGT D1_Integrated Programme Schedule;M&E;Milestones;New SA2 Section Milestone",2,1,0.0000036435,0.0156663276,0.0067141404,0,1.0,0.0000812387,0.0136986301,0.0030769231,0.0055,0.0402088773,0.0212355212,0.0,1.0,0.0
1.3.4.4-6,SC1100,"Section 10 - Mech. Compl. of all PP incl. Heating Modules, drums, evaporators. - HRSG Ready for HP Piping",7112,"CCGTD1_IPS",TT_FinMile,"58305",-,-,-,100,TK_Complete,31/10/2018,24/10/2018,31/10/2018,24/10/2018,"HRS12.1000 FS","HRS12.1000","SC1230 FS","SC1230",170,205,170,205,39,48,39,48,38,,"CCGT D1_Integrated Programme Schedule;M&E;Milestones;New SA2 Section Milestone",1,1,0.0000057965,0.0016276704,0.009155646,0,1.0,0.0000812387,0.0068493151,0.0030769231,0.00875,0.0041775457,0.028957529,0.0,1.0,0.0
1.3.4.4-7,SC1130,"Section 13 - Construction Completion of the Steam Turbine Drain Skid MAL00Y",7112,"CCGTD1_IPS",TT_FinMile,"58305",-,-,-,100,TK_Complete,29/09/2018,22/09/2018,29/09/2018,22/09/2018,"10MAL10 FS","10MAL10","10MAL20 FS","10MAL20",165,201,165,201,38,46,38,46,37,,"CCGT D1_Integrated Programme Schedule;M&E;Milestones;New SA2 Section Milestone",1,1,0.0,0.0038657172,0.0016276704,0,1.0,0.0000812387,0.0068493151,0.0030769231,0.0,0.009921671,0.0051480051,0.0,1.0,0.0
1.3.4.4-8,SC1140,"Section 14 - Construction completion of the Module Pipe Racks UMCM1Y & UMCL1Y",7112,"CCGTD1_IPS",TT_FinMile,"58305",-,-,-,100,TK_Complete,12/04/2019,30/03/2019,12/04/2019,30/03/2019,"PMS14.1020 FS,PMS14.1050 FS","PMS14.1020,PMS14.1050","","",193,228,193,228,45,53,45,53,53,,"CCGT D1_Integrated Programme Schedule;M&E;Milestones;New SA2 Section Milestone",2,0,0.0,0.0,0.0012207528,0,1.0,0.0000812387,0.0136986301,0.0,0.0,0.0,0.0038610039,0.0,1.0,0.0
1.3.4.4-9,SC1150,"Section 15 A - Construction completion of the condenser and cooling water connection to the Bonna cooling water pipes",7112,"CCGTD1_IPS",TT_FinMile,"58305",-,-,-,100,TK_Complete,02/12/2019,14/11/2019,02/12/2019,14/11/2019,"10PAB-02-20 FS","10PAB-02-20","10PAB-02-60 FS","10PAB-02-60",226,260,226,260,52,60,52,60,84,,"CCGT D1_Integrated Programme Schedule;M&E;Milestones;New SA2 Section Milestone",1,1,0.0000028155,0.0032553408,0.0276703967,0,1.0,0.0000812387,0.0068493151,0.0030769231,0.00425,0.0083550914,0.0875160875,0.0,1.0,0.0
1.3.4.4-10,SC1010-2,"Section 01.2 - Completion of the submission of unpriced PO to confirm the placement of Land based cranes (50-300T)",7112,"CCGTD1_IPS",TT_FinMile,"58305",-,-,-,100,TK_Complete,12/02/2018,15/01/2018,12/02/2018,15/01/2018,"MWS01.1010 FS","MWS01.1010","HRS09.1020 FS","HRS09.1020",132,165,132,165,30,38,30,38,18,,"CCGT D1_Integrated Programme Schedule;M&E;Milestones;New SA2 Section Milestone",1,1,0.0000036435,0.0179043744,0.0004069176,0,1.0,0.0000812387,0.0068493151,0.0030769231,0.0055,0.0459530026,0.0012870013,0.0,1.0,0.0
1.3.4.4-11,SC1020-2,"Section 02.2 - Completion of submission of Construction Execution Plan",7112,"CCGTD1_IPS",TT_FinMile,"58305",-,-,-,100,TK_Complete,15/02/2018,17/11/2017,15/02/2018,17/11/2017,"A1010 FS","A1010","HRS09.1030 FS","HRS09.1030",133,157,133,157,31,36,31,36,18,,"CCGT D1_Integrated Programme Schedule;M&E;Milestones;New SA2 Section Milestone",1,1,0.0000000083,0.0181078332,0.0002034588,0,1.0,0.0000812387,0.0068493151,0.0030769231,0.0000125,0.0464751958,0.0006435006,0.0,1.0,0.0
1.3.4.4-12,SC1020-3,"Section 02.3 - Completion of submission of SHE Plans",7112,"CCGTD1_IPS",TT_FinMile,"58305",-,-,-,100,TK_Complete,15/02/2018,17/11/2017,15/02/2018,17/11/2017,"A1010 FS","A1010","HRS09.1030 FS","HRS09.1030",133,157,133,157,31,36,31,36,18,,"CCGT D1_Integrated Programme Schedule;M&E;Milestones;New SA2 Section Milestone",1,1,0.0000000083,0.0181078332,0.0002034588,0,1.0,0.0000812387,0.0068493151,0.0030769231,0.0000125,0.0464751958,0.0006435006,0.0,1.0,0.0
1.3.4.4-13,SC1020-4,"Section 02.4 - Completion of submission of Material Management Plan",7112,"CCGTD1_IPS",TT_FinMile,"58305",-,-,-,100,TK_Complete,15/02/2018,11/01/2018,15/02/2018,11/01/2018,"A1010 FS","A1010","HRS09.1030 FS","HRS09.1030",133,164,133,164,31,38,31,38,18,,"CCGT D1_Integrated Programme Schedule;M&E;Milestones;New SA2 Section Milestone",1,1,0.0000000083,0.0181078332,0.0002034588,0,1.0,0.0000812387,0.0068493151,0.0030769231,0.0000125,0.0464751958,0.0006435006,0.0,1.0,0.0
1.3.4.4-14,SC1020-5,"Section 02.5 - Completion of submission of Project Quality Plan, Quality Assurance System Manual, etc",7112,"CCGTD1_IPS",TT_FinMile,"58305",-,-,-,100,TK_Complete,15/02/2018,08/01/2018,15/02/2018,08/01/2018,"A1010 FS","A1010","HRS09.1030 FS","HRS09.1030",133,164,133,164,31,38,31,38,18,,"CCGT D1_Integrated Programme Schedule;M&E;Milestones;New SA2 Section Milestone",1,1,0.0000000083,0.0181078332,0.0002034588,0,1.0,0.0000812387,0.0068493151,0.0030769231,0.0000125,0.0464751958,0.0006435006,0.0,1.0,0.0
1.3.4.4-15,SC1270,"New Section A (Formerly Sec. 20) 6.6Kv Completion",7112,"CCGTD1_IPS",TT_FinMile,"58305",-,-,-,100,TK_Complete,09/09/2019,17/08/2019,09/09/2019,17/08/2019,"SC1350 FS,10BBE80 FS","SC1350,10BBE80","","",214,248,214,248,50,57,50,57,76,,"CCGT D1_Integrated Programme Schedule;M&E;Milestones;New SA2 Section Milestone",2,0,0.0,0.0,0.0221770092,0,1.0,0.0000812387,0.0136986301,0.0,0.0,0.0,0.0701415701,0.0,1.0,0.0
1.3.4.4-16,SC1280,"New Section B (Formerly Sec. 11 & 12) Chemical Cleaning",7112,"CCGTD1_IPS",TT_FinMile,"58305",-,-,-,100,TK_Complete,30/11/2019,22/11/2019,30/11/2019,22/11/2019,"","","","",226,262,226,262,52,61,52,61,84,,"CCGT D1_Integrated Programme Schedule;M&E;Milestones;New SA2 Section Milestone",0,0,0.0,0.0,0.0,0,1.0,0.0000812387,0.0,0.0,0.0,0.0,0.0,0.0,1.0,0.0
1.3.4.4-17,SC1290,"New Section C (Formerly Sec. 18 & 21) Back Energization",7112,"CCGTD1_IPS",TT_FinMile,"58305",-,-,-,100,TK_Complete,06/12/2019,20/11/2019,06/12/2019,20/11/2019,"SC1180 FS,SC1210 FS","SC1180,SC1210","","",227,261,227,261,53,61,53,61,85,,"CCGT D1_Integrated Programme Schedule;M&E;Milestones;New SA2 Section Milestone",2,0,0.0,0.0,0.0744659207,0,1.0,0.0000812387,0.0136986301,0.0,0.0,0.0,0.2355212355,0.0,1.0,0.0
1.3.4.4-18,SC1300,"New Section D (Formerly Sec. 6A, 6B, 7, 8, 16, 17,19, 22 & 23) Pre-mechanical completion (Initial fire)",7112,"CCGTD1_IPS",TT_FinMile,"58305",-,-,-,100,TK_Complete,14/04/2020,29/03/2020,14/04/2020,29/03/2020,"SC1060-1 FS,SC1060-2 FS,SC1070 FS,SC1080 FS,SC1160 FS,SC1170 FS,SC1190 FS,SC1220 FS,TOP1090 FS,TOP2880 FS,TOP2550 FS,TOP2450 FS,TOP2460 FS,TOP2520 FS,TOP2530 FS,TOP2540 FS,TOP2590 FS,TOP2610 FS,TOP2340 FS,TOP2390 FS,TOP2400 FS,TOP2410 FS,TOP2420 FS,TOP2430 FS,TOP2440 FS,TOP2470 FS,TOP2480 FS,TOP2490 FS,TOP2500 FS,TOP2560 FS,TOP2580 FS,TOP2600 FS,TOP2630 FS,TOP2640 FS,TOP2700 FS,TOP2710 FS,TOP2720 FS,TOP2730 FS,TOP2740 FS,TOP2750 FS,TOP2760 FS,TOP2800 FS,TOP2810 FS,TOP2820 FS,TOP2840 FS,TOP2850 FS,TOP2860 FS,TOP2870 FS,TOP2650 FS,TOP2660 FS,TOP2670 FS,TOP2680 FS,TOP2920 FS,TOP2910 FS,TOP2620 FS,TOP2770 FS,TOP2780 FS,TOP2790 FS,00GM-01-200 FS,00GM-01-180 FS,10PAB-02-90 FS","SC1060-1,SC1060-2,SC1070,SC1080,SC1160,SC1170,SC1190,SC1220,TOP1090,TOP2880,TOP2550,TOP2450,TOP2460,TOP2520,TOP2530,TOP2540,TOP2590,TOP2610,TOP2340,TOP2390,TOP2400,TOP2410,TOP2420,TOP2430,TOP2440,TOP2470,TOP2480,TOP2490,TOP2500,TOP2560,TOP2580,TOP2600,TOP2630,TOP2640,TOP2700,TOP2710,TOP2720,TOP2730,TOP2740,TOP2750,TOP2760,TOP2800,TOP2810,TOP2820,TOP2840,TOP2850,TOP2860,TOP2870,TOP2650,TOP2660,TOP2670,TOP2680,TOP2920,TOP2910,TOP2620,TOP2770,TOP2780,TOP2790,00GM-01-200,00GM-01-180,10PAB-02-90","","",245,280,245,280,57,65,57,65,91,,"CCGT D1_Integrated Programme Schedule;M&E;Milestones;New SA2 Section Milestone",61,0,0.0,0.0,0.2610376399,0,1.0,0.0000812387,0.4178082192,0.0,0.0,0.0,0.8256113256,0.0,1.0,0.0
1.3.4.4-19,SC1310,"New Section E (Formerly Sec. 24) Documentation complete",7112,"CCGTD1_IPS",TT_FinMile,"58305",-,-,-,100,TK_Complete,14/04/2020,16/06/2020,14/04/2020,16/06/2020,"SC1240 FS","SC1240","","",245,291,245,291,57,68,57,68,91,,"CCGT D1_Integrated Programme Schedule;M&E;Milestones;New SA2 Section Milestone",1,0,0.0,0.0,0.314750763,0,1.0,0.0000812387,0.0068493151,0.0,0.0,0.0,0.9954954955,0.0,1.0,0.0
1.3.4.4-20,SC1320,"New Section F (Formerly Sec. 25) Mechanical Completion (Cold commissioning)",7112,"CCGTD1_IPS",TT_FinMile,"58305",-,-,-,100,TK_Complete,14/04/2020,21/01/2020,14/04/2020,21/01/2020,"SC1250 FS","SC1250","","",245,270,245,270,57,63,57,63,91,,"CCGT D1_Integrated Programme Schedule;M&E;Milestones;New SA2 Section Milestone",1,0,0.0,0.0,0.3159715158,0,1.0,0.0000812387,0.0068493151,0.0,0.0,0.0,0.9993564994,0.0,1.0,0.0
1.3.4.4-21,SC1330,"New Section G (Formerly Sec. 26) Commercial operation (Hot Commissioning)",7112,"CCGTD1_IPS",TT_FinMile,"58305",-,-,-,100,TK_Complete,14/04/2020,01/07/2020,14/04/2020,01/07/2020,"SC1260 FS","SC1260","","",245,293,245,293,57,68,57,68,91,,"CCGT D1_Integrated Programme Schedule;M&E;Milestones;New SA2 Section Milestone",1,0,0.0,0.0,0.3161749746,0,1.0,0.0000812387,0.0068493151,0.0,0.0,0.0,1.0,0.0,1.0,0.0
1.3.4.4-22,SC1340,"Section 15 B - Demin Water Available",7112,"CCGTD1_IPS",TT_FinMile,"58305",-,-,-,100,TK_Complete,10/07/2019,22/05/2019,10/07/2019,22/05/2019,"00GHC-01-80 FS","00GHC-01-80","","",206,235,206,235,48,55,48,55,66,,"CCGT D1_Integrated Programme Schedule;M&E;Milestones;New SA2 Section Milestone",1,0,0.0,0.0,0.0022380468,0,1.0,0.0000812387,0.0068493151,0.0,0.0,0.0,0.0070785071,0.0,1.0,0.0
1.3.4.5,58304,"Contract",7112,"CCGTD1_IPS",WBS,"58303",,,,100,Complete,30/11/2017,22/09/2017,24/06/2020,30/06/2020,,,,,122,149,256,293,28,34,59,68,,,"CCGT D1_Integrated Programme Schedule;M&E;Milestones"
1.3.4.5-1,A1010,"Date for Commencement of the Works",7112,"CCGTD1_IPS",TT_Mile,"58304",-,-,-,100,TK_Complete,30/11/2017,22/09/2017,30/11/2017,22/09/2017,"","","SI1MBR4-40 FS,ECS18.1170 FS,MWS01.1000 FS,ENG2130 FS,SI-CYA4-25 FS,KD_E03 FS,KD_E07 FS,ENG2160 FS,SI1MAL4-40 FS,KD_D01 FS,ENG1950 FS,SI1MAV4-40 FS,SI1PAC4B40 FS,SI1LBG4C40 FS,SI1UBA4G25 FS,KD_C02 FS,ENG2300 FS,SP1MA-3-80 FS,SI1MBA4-25 FS,SI-PAS4-66 FS,SI1UMC4X40 FS,SI1PAA4-25 FS,ENG1860 FS,ENG2380 FS,ENG1610 FS,ENG2200 FS,SI1PGB4B25 FS,SI-CYP4-25 FS,SI1BFA4-10 FS,SI1HA-4D25 FS,ENG2230 FS,KD_D05 FS,KD_E04 FS,ENG1210 FS,ECS21.1010 FS,EDKS.1010 FS,KD_F07 FS,KD_F02 FS,ENG1180 FS,ENG2050 FS,SI1MA-4-45 FS,SI1MB-4E25 FS,SI1MA-4-55 FS,EDS.1040 FS,SI-CR-4-40 FS,SI0PUN4-60 FS,ENG1710 FS,SI1SMM4A25 FS,SI1HA-4C25 FS,MWS03.1010 FS,ENG2320 FS,ENG1600 FS,SI1MA-4-25 FS,ENG2330 FS,ENG2190 FS,SI1PAA4-50 FS,SI1MAG4-40 FS,SI1HA-4D40 FS,KD_B06 FS,ENG1840 FS,ENG2220 FS,ECS18.1330 FS,SI-BZP4-27 FS,SI1PBB4B45 FS,SI1MAL4-25 FS,SI1STG-4-44 FS,ECS18.1210 FS,ENG1070 FS,SI1PGB4C25 FS,P1010 FS,SI1C--4-25 FS,SI1LD-4-40 FS,SI1SGJ4-25 FS,MWS01.1010 FS,SI1SCA4-40 FS,EDS.1050 FS,KD_E05 FS,ENG2280 FS,SI1HB-4C25 FS,SI1MAD4-25 FS,A3310 FS,ENG1980 FS,SI1UMC4Y40 FS,SI-MKG4-60 FS,ENG1350 FS,ENG2100 FS,ENG2150 FS,SI1LCL4B40 FS,SI1QU-4-40 FS,SI1HSJ4-42 FS,ENG1390 FS,ENG1760 FS,ENG1780 FS,SI1HB-4D25 FS,SI1LCB4B40 FS,MWS02.1030 FS,ENG1800 FS,SI1CHA4-10 FS,SI1LAC4-40 FS,SI0XKA4-25 FS,SI-BZK4-60 FS,KD_D07 FS,ENG1170 FS,SI1CJT4-25 FS,SI1MBL4-40 FS,SI1MAJ4-44 FS,SI1MAX4-40 FS,EDS.1000 FS,SI1HAD4E40 FS,KD_B05 FS,ENG2370 FS,ENG1870 FS,SI1HB-4E25 FS,SI1HB-4A40 FS,KD_B01 FS,ENG1630 FS,SI0GN-4B44 FS,SI---P4I40 FS,KD_C04 FS,ENG1040 FS,ENG1280 FS,SI1MPB4E25 FS,SI1BBA4-10 FS,SI-C--4B40 FS,SI0ACA4-45 FS,SI-MBH4-58 FS,ENG1030 FS,ENG1220 FS,ENG2290 FS,ENG1010 FS,ENG1190 FS,ENG1340 FS,ENG2060 FS,ENG2080 FS,SI1BBT4-25 FS,ENG1100 FS,ENG1120 FS,SI1BAC4-25 FS,ENG1720 FS,ENG1890 FS,SI1LCA4B25 FS,SI1MKA4E25 FS,SI-BZP4B25 FS,SI1MPB4-25 FS,SI1LDK4B40 FS,KD_D08 FS,SI1UPY4-40 FS,KD_B03 FS,KD_D02 FS,SI-BZK4-52 FS,MWS03.1020 FS,ENG1920 FS,ENG2030 FS,SI-SGA4A25 FS,SI1PGB4D25 FS,SI1--P4H40 FS,MWS02.1060 FS,ENG1330 FS,ECS18.1370 FS,SI1MAW4-40 FS,SI-CP-4-40 FS,ENG2360 FS,ENG1970 FS,SI1BAA4-25 FS,EDS.1060 FS,SI1CJF4-25 FS,TPAD0010 FS,KD_E01 FS,Sub-GTST-100 FS,ENG1020 FS,ENG1930 FS,SI1SMQ4A45 FS,SI0ACA4-25 FS,SI-SG-4-56 FS,SI1QC-4-40 FS,SI0ACA4-55 FS,SI1LCA4-40 FS,SI1PAC4E40 FS,KD_D10 FS,ENG1770 FS,ENG2140 FS,SI1ULA3B25 FS,SI1PDB4-25 FS,SI1BFT4-25 FS,ENG1620 FS,SI1HSJ4-25 FS,CP1HB-6A25 FS,MWS02.1040 FS,SI1PAH4-25 FS,SI1MB-4E27 FS,SI1BAT4-25 FS,KD_B02 FS,MWS02.1010 FS,ENG1830 FS,ENG1940 FS,SI1PCB4B25 FS,SI-CYE4-58 FS,EDKS.1000 FS,ENG1090 FS,ENG2250 FS,KD_C07 FS,ENG1880 FS,ENG2000 FS,ENG2170 FS,EDS.1090 FS,SI1UMY4-42 FS,SI-EK-4-40 FS,KD_C06 FS,ENG1300 FS,ENG2020 FS,ENG2070 FS,EDS.1020 FS,KD_F01 FS,KD_E02 FS,KD_D11 FS,ENG1060 FS,ENG2010 FS,SI1MKA4-25 FS,SI1HAD4E25 FS,SI-EK-4-44 FS,ENG1250 FS,ENG1990 FS,ENG2270 FS,SI1MA-4-59 FS,SI1PXB4-40 FS,ENG2340 FS,SI-GHD4-62 FS,KD_B07 FS,MWS02.1020 FS,ENG1290 FS,ENG1750 FS,ENG1850 FS,ENG2040 FS,ENG2180 FS,SI1HA-4C40 FS,EDS.1070 FS,EDS.1030 FS,KD_G01 FS,ENG1820 FS,ENG1960 FS,SI1PAA4-40 FS,SI-BZK4-25 FS,SI1UHW3B25 FS,SI0EG-4-44 FS,SI-SCB4-64 FS,KD_D04 FS,ENG2240 FS,SI1HB-4A25 FS,KD_D09 FS,ENG2310 FS,ENG1080 FS,SI-C-4C40 FS,CP1UMC5A45 FS,ENG2110 FS,SI-GM-4B40 FS,SI-BZK4-58 FS,ENG1810 FS,SI1--P4A40 FS,SI1LBH4D25 FS,MWS02.1050 SS,ENG1000 FS,ENG1790 FS,SI1SMM4-25 FS,EDS.1010 FS,ENG1200 FS,SI-BZP4-25 FS,ECS18.1130 FS,ENG2350 FS,SI1MKC4-25 FS,EDS.1080 FS,ENG1900 FS,ENG2210 FS,SI1MBR4-42 FS,SI-CFE4-40 FS,SI-ZTB4A25 FS,KD_D06 FS,SUB-CON-100 FS,SUB-HRSG-100 FS,SUB-EIC-100 FS,ENG0000 FS,MS2390 FS,10BBE70 FS,SC1020-2 FS,SC1020-3 FS,SC1020-5 FS,SC1020-4 FS,SUB-BOP-160 FS,10LBC20 FS,10PCB10 FS,00SCA110 FS,10QCD20 FS,10EK10 FS,GKB10 FS,10GM-01-10 FS,00GA10 FS,FSS22.1060 FS,00UPR10 FS,10PAB-02-10 FS,00GHD-110 FS,10PUR10 FS,10SGA-02-10 FS,00MBH20 FS,00LAB20 FS,10LBA80-20 FS,00EG-01-10 FS,10QCC20 FS,10PAH10 FS,10LBA10-20 FS,10QU20 FS,A3220 FS,00GM-03-10 FS,10GHC10 FS,00MKG20 FS,10SGJ-02-10 FS,00GHD-02-10 FS,00SCA10 FS,00LBG10 FS,00STG20 FS,00SGM-01-10 FS,00PUN10 FS,00GKB-02-10 FS,00PAA10 FS,00SGA-01-10 FS,00GHC-02-20 FS,10LCA-02-10 FS","SI1MBR4-40,ECS18.1170,MWS01.1000,ENG2130,SI-CYA4-25,KD_E03,KD_E07,ENG2160,SI1MAL4-40,KD_D01,ENG1950,SI1MAV4-40,SI1PAC4B40,SI1LBG4C40,SI1UBA4G25,KD_C02,ENG2300,SP1MA-3-80,SI1MBA4-25,SI-PAS4-66,SI1UMC4X40,SI1PAA4-25,ENG1860,ENG2380,ENG1610,ENG2200,SI1PGB4B25,SI-CYP4-25,SI1BFA4-10,SI1HA-4D25,ENG2230,KD_D05,KD_E04,ENG1210,ECS21.1010,EDKS.1010,KD_F07,KD_F02,ENG1180,ENG2050,SI1MA-4-45,SI1MB-4E25,SI1MA-4-55,EDS.1040,SI-CR-4-40,SI0PUN4-60,ENG1710,SI1SMM4A25,SI1HA-4C25,MWS03.1010,ENG2320,ENG1600,SI1MA-4-25,ENG2330,ENG2190,SI1PAA4-50,SI1MAG4-40,SI1HA-4D40,KD_B06,ENG1840,ENG2220,ECS18.1330,SI-BZP4-27,SI1PBB4B45,SI1MAL4-25,SI1STG-4-44,ECS18.1210,ENG1070,SI1PGB4C25,P1010,SI1C--4-25,SI1LD-4-40,SI1SGJ4-25,MWS01.1010,SI1SCA4-40,EDS.1050,KD_E05,ENG2280,SI1HB-4C25,SI1MAD4-25,A3310,ENG1980,SI1UMC4Y40,SI-MKG4-60,ENG1350,ENG2100,ENG2150,SI1LCL4B40,SI1QU-4-40,SI1HSJ4-42,ENG1390,ENG1760,ENG1780,SI1HB-4D25,SI1LCB4B40,MWS02.1030,ENG1800,SI1CHA4-10,SI1LAC4-40,SI0XKA4-25,SI-BZK4-60,KD_D07,ENG1170,SI1CJT4-25,SI1MBL4-40,SI1MAJ4-44,SI1MAX4-40,EDS.1000,SI1HAD4E40,KD_B05,ENG2370,ENG1870,SI1HB-4E25,SI1HB-4A40,KD_B01,ENG1630,SI0GN-4B44,SI---P4I40,KD_C04,ENG1040,ENG1280,SI1MPB4E25,SI1BBA4-10,SI-C--4B40,SI0ACA4-45,SI-MBH4-58,ENG1030,ENG1220,ENG2290,ENG1010,ENG1190,ENG1340,ENG2060,ENG2080,SI1BBT4-25,ENG1100,ENG1120,SI1BAC4-25,ENG1720,ENG1890,SI1LCA4B25,SI1MKA4E25,SI-BZP4B25,SI1MPB4-25,SI1LDK4B40,KD_D08,SI1UPY4-40,KD_B03,KD_D02,SI-BZK4-52,MWS03.1020,ENG1920,ENG2030,SI-SGA4A25,SI1PGB4D25,SI1--P4H40,MWS02.1060,ENG1330,ECS18.1370,SI1MAW4-40,SI-CP-4-40,ENG2360,ENG1970,SI1BAA4-25,EDS.1060,SI1CJF4-25,TPAD0010,KD_E01,Sub-GTST-100,ENG1020,ENG1930,SI1SMQ4A45,SI0ACA4-25,SI-SG-4-56,SI1QC-4-40,SI0ACA4-55,SI1LCA4-40,SI1PAC4E40,KD_D10,ENG1770,ENG2140,SI1ULA3B25,SI1PDB4-25,SI1BFT4-25,ENG1620,SI1HSJ4-25,CP1HB-6A25,MWS02.1040,SI1PAH4-25,SI1MB-4E27,SI1BAT4-25,KD_B02,MWS02.1010,ENG1830,ENG1940,SI1PCB4B25,SI-CYE4-58,EDKS.1000,ENG1090,ENG2250,KD_C07,ENG1880,ENG2000,ENG2170,EDS.1090,SI1UMY4-42,SI-EK-4-40,KD_C06,ENG1300,ENG2020,ENG2070,EDS.1020,KD_F01,KD_E02,KD_D11,ENG1060,ENG2010,SI1MKA4-25,SI1HAD4E25,SI-EK-4-44,ENG1250,ENG1990,ENG2270,SI1MA-4-59,SI1PXB4-40,ENG2340,SI-GHD4-62,KD_B07,MWS02.1020,ENG1290,ENG1750,ENG1850,ENG2040,ENG2180,SI1HA-4C40,EDS.1070,EDS.1030,KD_G01,ENG1820,ENG1960,SI1PAA4-40,SI-BZK4-25,SI1UHW3B25,SI0EG-4-44,SI-SCB4-64,KD_D04,ENG2240,SI1HB-4A25,KD_D09,ENG2310,ENG1080,SI-C-4C40,CP1UMC5A45,ENG2110,SI-GM-4B40,SI-BZK4-58,ENG1810,SI1--P4A40,SI1LBH4D25,MWS02.1050,ENG1000,ENG1790,SI1SMM4-25,EDS.1010,ENG1200,SI-BZP4-25,ECS18.1130,ENG2350,SI1MKC4-25,EDS.1080,ENG1900,ENG2210,SI1MBR4-42,SI-CFE4-40,SI-ZTB4A25,KD_D06,SUB-CON-100,SUB-HRSG-100,SUB-EIC-100,ENG0000,MS2390,10BBE70,SC1020-2,SC1020-3,SC1020-5,SC1020-4,SUB-BOP-160,10LBC20,10PCB10,00SCA110,10QCD20,10EK10,GKB10,10GM-01-10,00GA10,FSS22.1060,00UPR10,10PAB-02-10,00GHD-110,10PUR10,10SGA-02-10,00MBH20,00LAB20,10LBA80-20,00EG-01-10,10QCC20,10PAH10,10LBA10-20,10QU20,A3220,00GM-03-10,10GHC10,00MKG20,10SGJ-02-10,00GHD-02-10,00SCA10,00LBG10,00STG20,00SGM-01-10,00PUN10,00GKB-02-10,00PAA10,00SGA-01-10,00GHC-02-20,10LCA-02-10",122,149,122,149,28,34,28,34,15,,"CCGT D1_Integrated Programme Schedule;M&E;Milestones;Contract",0,325,0.0,0.3896236012,0.0,0,1.0,0.0000812387,0.0,1.0,0.0,1.0,0.0,0.0,1.0,0.0
1.3.4.5-2,SC1040,"Section 04 - Completion of grouting required for the foundations and support for shaftline equipment",7112,"CCGTD1_IPS",TT_FinMile,"58304",-,-,-,100,TK_Complete,09/05/2019,07/03/2019,09/05/2019,07/03/2019,"10MBA1080 FS,10MA-1270 FS,10MKA1200 FS","10MBA1080,10MA-1270,10MKA1200","","",197,224,197,224,46,52,46,52,58,,"CCGT D1_Integrated Programme Schedule;M&E;Milestones;Contract",3,0,0.0,0.0,0.019328586,0,1.0,0.0000812387,0.0205479452,0.0,0.0,0.0,0.0611325611,0.0,1.0,0.0
1.3.4.5-3,SC1060-1,"Section 06.1 - Completion of TOP'S and successfully pass TOP Tests for Generator & Auxiliaries Systems",7112,"CCGTD1_IPS",TT_FinMile,"58304",-,-,-,100,TK_Complete,31/12/2019,20/11/2019,31/12/2019,20/11/2019,"TOP1210 FS,TOP1220 FS,TOP1230 FS,TOP1200 FS,TOP1240 FS","TOP1210,TOP1220,TOP1230,TOP1200,TOP1240","SC1230 FS,SC1300 FS","SC1230,SC1300",230,261,230,261,53,61,53,61,86,,"CCGT D1_Integrated Programme Schedule;M&E;Milestones;Contract",5,2,0.0000031053,0.0018311292,0.0435401831,0,1.0,0.0000812387,0.0342465753,0.0061538462,0.0046875,0.0046997389,0.1377091377,0.0,1.0,0.0
1.3.4.5-4,SC1070,"Section 07 - Completion of TOP'S and successfully pass TOP Tests for Steam Turbine & Auxiliaries",7112,"CCGTD1_IPS",TT_FinMile,"58304",-,-,-,100,TK_Complete,28/03/2020,28/03/2020,28/03/2020,28/03/2020,"TOP1150 FS,TOP1110 FS,TOP1140 FS,TOP2090 FS,TOP1190 FS,TOP1100 FS,TOP1120 FS,TOP1170 FS,TOP1180 FS,TOP1160 FS,TOP1130 FS,10MAV90 FS,10MAX90 FS,10MAN110 FS,10MAW100 FS,10MAL90 FS","TOP1150,TOP1110,TOP1140,TOP2090,TOP1190,TOP1100,TOP1120,TOP1170,TOP1180,TOP1160,TOP1130,10MAV90,10MAX90,10MAN110,10MAW100,10MAL90","SC1230 FS,SC1300 FS","SC1230,SC1300",243,280,243,280,56,65,56,65,89,,"CCGT D1_Integrated Programme Schedule;M&E;Milestones;Contract",16,2,0.0000177983,0.0018311292,0.0531027467,0,1.0,0.0000812387,0.1095890411,0.0061538462,0.0268668403,0.0046997389,0.167953668,0.0,1.0,0.0
1.3.4.5-5,SC1080,"Section 08 - Completion of TOP'S and successfully pass TOP Tests for Circulating Water Area",7112,"CCGTD1_IPS",TT_FinMile,"58304",-,-,-,100,TK_Complete,08/04/2020,17/12/2019,08/04/2020,17/12/2019,"TOP2100 FS,TOP1440 FS,TOP2120 FS,TOP2130 FS,TOP2140 FS,00PUN80 FS,TOP2010 FS","TOP2100,TOP1440,TOP2120,TOP2130,TOP2140,00PUN80,TOP2010","SC1300 FS","SC1300",245,265,245,265,57,61,57,61,91,,"CCGT D1_Integrated Programme Schedule;M&E;Milestones;Contract",7,1,0.0000023807,0.0002034588,0.0522889115,0,1.0,0.0000812387,0.0479452055,0.0030769231,0.00359375,0.0005221932,0.1653796654,0.0,1.0,0.0
1.3.4.5-6,SC1110,"Section 11 - Mechanical Completion 100% of TOP and pass TOP tests, for piping systems to allow chemical clean of HRSG",7112,"CCGTD1_IPS",TT_FinMile,"58304",-,-,-,100,TK_Complete,11/12/2019,30/11/2019,11/12/2019,30/11/2019,"TOP1930 FS,TOP1840 FS,TOP1830 FS,TOP1860 FS,TOP1910 FS,TOP2080 FS,TOP1850 FS","TOP1930,TOP1840,TOP1830,TOP1860,TOP1910,TOP2080,TOP1850","","",228,263,228,263,53,61,53,61,85,,"CCGT D1_Integrated Programme Schedule;M&E;Milestones;Contract",7,0,0.0,0.0,0.0476093591,0,1.0,0.0000812387,0.0479452055,0.0,0.0,0.0,0.1505791506,0.0,1.0,0.0
1.3.4.5-7,SC1120,"Section 12 - Completion of the HRSG systems, incl. all tests to prove integrity of the HRSG",7112,"CCGTD1_IPS",TT_FinMile,"58304",-,-,-,100,TK_Complete,30/11/2019,30/11/2019,30/11/2019,30/11/2019,"HRS12.1000 FS","HRS12.1000","SC1230 FS","SC1230",226,263,226,263,52,61,52,61,82,,"CCGT D1_Integrated Programme Schedule;M&E;Milestones;Contract",1,1,0.0000057965,0.0016276704,0.009155646,0,1.0,0.0000812387,0.0068493151,0.0030769231,0.00875,0.0041775457,0.028957529,0.0,1.0,0.0
1.3.4.5-8,SC1160,"Section 16 - Mechanical Completion of gas supply pipework with the issuance of the User App. from GSO",7112,"CCGTD1_IPS",TT_FinMile,"58304",-,-,-,100,TK_Complete,28/03/2020,28/11/2019,28/03/2020,28/11/2019,"TOP2010 FS,TOP1280 FS","TOP2010,TOP1280","SC1230 FS,SC1300 FS","SC1230,SC1300",243,262,243,262,56,61,56,61,89,,"CCGT D1_Integrated Programme Schedule;M&E;Milestones;Contract",2,2,0.0000008695,0.0018311292,0.0217700916,0,1.0,0.0000812387,0.0136986301,0.0061538462,0.0013125,0.0046997389,0.0688545689,0.0,1.0,0.0
1.3.4.5-9,SC1170,"Section 17 - Mechanical Completion of 100% of TOP and successfully pass TOP Tests for all piping systems and Module Skid",7112,"CCGTD1_IPS",TT_FinMile,"58304",-,-,-,100,TK_Complete,28/03/2020,15/02/2020,28/03/2020,15/02/2020,"PMS14.1020 FS,PMS14.1050 FS,TOP1800 FS,TOP1930 FS,TOP1940 FS,TOP2080 FS,TOP1700 FS,TOP2060 FS,TOP1710 FS,TOP2310 FS,TOP2070 FS,TOP1410 FS,TOP1920 FS,TOP2050 FS,TOP1910 FS,TOP1880 FS,TOP2010 FS,TOP1440 FS,TOP2120 FS,TOP2270 FS,TOP2190 FS,TOP1430 FS,00GA80 FS,00MBU90 FS,00GHC-01-80 FS","PMS14.1020,PMS14.1050,TOP1800,TOP1930,TOP1940,TOP2080,TOP1700,TOP2060,TOP1710,TOP2310,TOP2070,TOP1410,TOP1920,TOP2050,TOP1910,TOP1880,TOP2010,TOP1440,TOP2120,TOP2270,TOP2190,TOP1430,00GA80,00MBU90,00GHC-01-80","SC1250 FS,SC1300 FS","SC1250,SC1300",243,274,243,274,56,63,56,63,89,,"CCGT D1_Integrated Programme Schedule;M&E;Milestones;Contract",25,2,0.0000419546,0.0012207528,0.1151576806,0,1.0,0.0000812387,0.1712328767,0.0061538462,0.06333125,0.0031331593,0.3642213642,0.0,1.0,0.0
1.3.4.5-10,SC1180,"Section 18 - Completion of the following TOP's and pass TOP test (refer to list)",7112,"CCGTD1_IPS",TT_FinMile,"58304",-,-,-,100,TK_Complete,02/12/2019,20/11/2019,02/12/2019,20/11/2019,"TOP1760 FS,TOP2360 FS,TOP1490 FS,TOP1750 FS,TOP1770 FS,TOP1720 FS,TOP1500 FS,TOP1520 FS,TOP1660 FS,SUB-EIC-180 FS,KD_D02 FS","TOP1760,TOP2360,TOP1490,TOP1750,TOP1770,TOP1720,TOP1500,TOP1520,TOP1660,SUB-EIC-180,KD_D02","SC1230 FS,SC1290 FS","SC1230,SC1290",226,261,226,261,52,61,52,61,84,,"CCGT D1_Integrated Programme Schedule;M&E;Milestones;Contract",11,2,0.0000030225,0.0018311292,0.0272634791,0,1.0,0.0000812387,0.0753424658,0.0061538462,0.0045625,0.0046997389,0.0862290862,0.0,1.0,0.0
1.3.4.5-11,SC1190,"Section 19 - Completion of Installation of 100% of TOP and successfully pass TOP Tests for EC&I systems",7112,"CCGTD1_IPS",TT_FinMile,"58304",-,-,-,100,TK_Complete,28/03/2020,15/02/2020,28/03/2020,15/02/2020,"TOP1750 FS,TOP1490 FS,TOP1660 FS,A2330 FS,CP1BZL7A15 FS,TOP1500 FS,TOP1720 FS,TOP1760 FS,TOP2360 FS,A3320 FS,TOP1770 FS,CP-BZL7-60 FS,SUB-EIC-180 FS,KD_D02 FS","TOP1750,TOP1490,TOP1660,A2330,CP1BZL7A15,TOP1500,TOP1720,TOP1760,TOP2360,A3320,TOP1770,CP-BZL7-60,SUB-EIC-180,KD_D02","SC1250 FS,SC1300 FS","SC1250,SC1300",243,274,243,274,56,63,56,63,89,,"CCGT D1_Integrated Programme Schedule;M&E;Milestones;Contract",14,2,0.0000131043,0.0012207528,0.0262461851,0,1.0,0.0000812387,0.095890411,0.0061538462,0.01978125,0.0031331593,0.083011583,0.0,1.0,0.0
1.3.4.5-12,SC1200,"Section 20 - Completion of all terminations of 6.6kV system and construction completion of the generator isolated  ph.BD",7112,"CCGTD1_IPS",TT_FinMile,"58304",-,-,-,100,TK_Complete,28/03/2020,27/11/2019,28/03/2020,27/11/2019,"ECS20.1050 FS,ECS20.1080 FS,ECS20.1060 FS,10CP-GT60 FS,ECS20.1070 FS,ECS20.1110 FS,ECS20.1030 FS,10BBE60 FS,00XKA60 FS,CP-BZK7G25 FS","ECS20.1050,ECS20.1080,ECS20.1060,10CP-GT60,ECS20.1070,ECS20.1110,ECS20.1030,10BBE60,00XKA60,CP-BZK7G25","SC1230 FS","SC1230",243,262,243,262,56,61,56,61,89,,"CCGT D1_Integrated Programme Schedule;M&E;Milestones;Contract",10,1,0.0000070536,0.0016276704,0.022380468,0,1.0,0.0000812387,0.0684931507,0.0030769231,0.010647516,0.0041775457,0.0707850708,0.0,1.0,0.0
1.3.4.5-13,SC1210,"Section 21 - Completion of all works and TOP's to enable back-energization from CLP 400kV System",7112,"CCGTD1_IPS",TT_FinMile,"58304",-,-,-,100,TK_Complete,06/12/2019,20/11/2019,06/12/2019,20/11/2019,"TOP1490 FS,TOP1720 FS,TOP1730 FS,TOP1760 FS,TOP1770 FS,TOP2360 FS,TOP1680 FS,TOP1530 FS,TOP1520 FS,TOP1300 FS,TOP1660 FS,00BHV70 FS,00BAW-01-60 FS,00BAW-02-60 FS,00BAW-03-60 FS","TOP1490,TOP1720,TOP1730,TOP1760,TOP1770,TOP2360,TOP1680,TOP1530,TOP1520,TOP1300,TOP1660,00BHV70,00BAW-01-60,00BAW-02-60,00BAW-03-60","SC1230 FS,SC1290 FS","SC1230,SC1290",227,261,227,261,53,61,53,61,85,,"CCGT D1_Integrated Programme Schedule;M&E;Milestones;Contract",15,2,0.0000120485,0.0018311292,0.0722278739,0,1.0,0.0000812387,0.102739726,0.0061538462,0.0181875,0.0046997389,0.2284427284,0.0,1.0,0.0
1.3.4.5-14,SC1220,"Section 22 - Construction Completion of CO2 systems including completion of NFPA leakage test",7112,"CCGTD1_IPS",TT_FinMile,"58304",-,-,-,100,TK_Complete,14/04/2020,06/01/2020,14/04/2020,06/01/2020,"TOP2370 FS,TOP1390 FS,TOP1400 FS,TOP1650 FS,10MBA1067 FS,TWS06.2520 FS,10SGJ-02-50 FS,FSS22.1060 FS","TOP2370,TOP1390,TOP1400,TOP1650,10MBA1067,TWS06.2520,10SGJ-02-50,FSS22.1060","SC1300 FS","SC1300",245,268,245,268,57,62,57,62,91,,"CCGT D1_Integrated Programme Schedule;M&E;Milestones;Contract",8,1,0.0000032088,0.0002034588,0.0164801628,0,1.0,0.0000812387,0.0547945205,0.0030769231,0.00484375,0.0005221932,0.0521235521,0.0,1.0,0.0
1.3.4.5-15,SC1230,"Section 23 - Completion of all TOP's associated with works and successfully pass TOP tests",7112,"CCGTD1_IPS",TT_FinMile,"58304",-,-,-,100,TK_Complete,14/04/2020,20/01/2020,14/04/2020,20/01/2020,"TOP1500 FS,TOP1520 FS,TOP1720 FS,TOP1730 FS,TOP1810 FS,TOP2050 FS,TOP2130 FS,TOP2160 FS,TOP2280 FS,TOP2310 FS,TOP1120 FS,TOP1190 FS,TOP1350 FS,TOP1410 FS,TOP1420 FS,SC1160 FS,SC1060-2 FS,TOP1470 FS,TOP1480 FS,TOP1530 FS,TOP1590 FS,TOP1740 FS,TOP1870 FS,TOP1900 FS,TOP1980 FS,TOP2080 FS,TOP1140 FS,TOP1230 FS,TOP1290 FS,TOP1360 FS,TOP1390 FS,SC1060-1 FS,TOP1620 FS,TOP1670 FS,TOP1820 FS,TOP1940 FS,TOP2270 FS,TOP2290 FS,TOP1250 FS,TOP1270 FS,TOP1340 FS,SC1010-1 FS,TOP1790 FS,TOP2060 FS,TOP2330 FS,TOP2350 FS,TOP2360 FS,TOP1160 FS,TOP1240 FS,SC1100 FS,A3220 FS,TOP1490 FS,TOP1560 FS,TOP1680 FS,TOP1700 FS,TOP1770 FS,TOP1830 FS,TOP1840 FS,TOP1950 FS,TOP2120 FS,TOP2140 FS,TOP1080 FS,TOP1110 FS,TOP1220 FS,TOP1260 FS,TOP1300 FS,TOP1370 FS,SC1070 FS,TOP1710 FS,TOP1850 FS,TOP1880 FS,TOP1960 FS,TOP2010 FS,TOP2020 FS,TOP2090 FS,TOP2110 FS,TOP2260 FS,TOP2300 FS,TOP1040 FS,TOP1280 FS,TOP1310 FS,TOP1320 FS,SC1120 FS,SC1210 FS,TOP1570 FS,TOP1580 FS,TOP1660 FS,TOP1910 FS,TOP2000 FS,TOP2070 FS,TOP2100 FS,TOP2370 FS,TOP1100 FS,TOP1200 FS,TOP1400 FS,TOP1430 FS,SC1200 FS,TOP1440 FS,TOP1460 FS,TOP1640 FS,TOP1650 FS,TOP1690 FS,TOP1750 FS,TOP1760 FS,TOP1800 FS,TOP1860 FS,TOP1920 FS,TOP1930 FS,TOP1970 FS,TOP2190 FS,TOP2250 FS,TOP1030 FS,TOP1070 FS,TOP1130 FS,TOP1150 FS,TOP1170 FS,TOP1180 FS,TOP1210 FS,TOP1330 FS,TOP1380 FS,SC1030 FS,SC1180 FS,TOP1060 FS,SC1350 FS,SI-BZK4-58 FS,SI-BZK4-25 FS,00BHV70 FS,SUB-EIC-180 FS,KD_D02 FS,10BBE60 FS,10BH60 FS,00PUN80 FS,00GM-02-80 FS,00BZL-03-40 FS,10BZL-01-40 FS,00GA80 FS,00BAW-01-60 FS,00BAW-02-60 FS,00BAW-03-60 FS,00GHD-180 FS,GKB80 FS,00MBU90 FS,00GHC-01-80 FS,00BZL-02-40 FS,00PUS110 FS,00PUS90 FS","TOP1500,TOP1520,TOP1720,TOP1730,TOP1810,TOP2050,TOP2130,TOP2160,TOP2280,TOP2310,TOP1120,TOP1190,TOP1350,TOP1410,TOP1420,SC1160,SC1060-2,TOP1470,TOP1480,TOP1530,TOP1590,TOP1740,TOP1870,TOP1900,TOP1980,TOP2080,TOP1140,TOP1230,TOP1290,TOP1360,TOP1390,SC1060-1,TOP1620,TOP1670,TOP1820,TOP1940,TOP2270,TOP2290,TOP1250,TOP1270,TOP1340,SC1010-1,TOP1790,TOP2060,TOP2330,TOP2350,TOP2360,TOP1160,TOP1240,SC1100,A3220,TOP1490,TOP1560,TOP1680,TOP1700,TOP1770,TOP1830,TOP1840,TOP1950,TOP2120,TOP2140,TOP1080,TOP1110,TOP1220,TOP1260,TOP1300,TOP1370,SC1070,TOP1710,TOP1850,TOP1880,TOP1960,TOP2010,TOP2020,TOP2090,TOP2110,TOP2260,TOP2300,TOP1040,TOP1280,TOP1310,TOP1320,SC1120,SC1210,TOP1570,TOP1580,TOP1660,TOP1910,TOP2000,TOP2070,TOP2100,TOP2370,TOP1100,TOP1200,TOP1400,TOP1430,SC1200,TOP1440,TOP1460,TOP1640,TOP1650,TOP1690,TOP1750,TOP1760,TOP1800,TOP1860,TOP1920,TOP1930,TOP1970,TOP2190,TOP2250,TOP1030,TOP1070,TOP1130,TOP1150,TOP1170,TOP1180,TOP1210,TOP1330,TOP1380,SC1030,SC1180,TOP1060,SC1350,SI-BZK4-58,SI-BZK4-25,00BHV70,SUB-EIC-180,KD_D02,10BBE60,10BH60,00PUN80,00GM-02-80,00BZL-03-40,10BZL-01-40,00GA80,00BAW-01-60,00BAW-02-60,00BAW-03-60,00GHD-180,GKB80,00MBU90,00GHC-01-80,00BZL-02-40,00PUS110,00PUS90","SC1240 FF,SC1250 FS","SC1240,SC1250",245,270,245,270,57,63,57,63,91,,"CCGT D1_Integrated Programme Schedule;M&E;Milestones;Contract",146,2,0.0002868609,0.0014242116,0.3143438454,0,1.0,0.0000812387,1.0,0.0061538462,0.4330221154,0.0036553525,0.9942084942,0.0,1.0,0.0
1.3.4.5-16,SC1240,"Section 24 - Completion of all completion documentation",7112,"CCGTD1_IPS",TT_FinMile,"58304",-,-,-,100,TK_Complete,14/04/2020,15/06/2020,14/04/2020,15/06/2020,"TOP1760 FS,TOP1920 FS,TOP1940 FS,TOP2080 FS,TOP2360 FS,TOP1120 FS,TOP1220 FS,TOP1240 FS,TOP1260 FS,TOP1580 FS,TOP1590 FS,TOP1770 FS,TOP1800 FS,TOP1850 FS,TOP1950 FS,TOP2090 FS,TOP2270 FS,TOP2280 FS,TOP2290 FS,TOP2300 FS,TOP2350 FS,TOP1080 FS,TOP1140 FS,TOP1200 FS,TOP1230 FS,TOP1270 FS,TOP1320 FS,TOP1350 FS,TOP1360 FS,TOP1420 FS,TOP1520 FS,TOP1530 FS,TOP1650 FS,TOP1730 FS,TOP1790 FS,TOP1830 FS,TOP1840 FS,TOP1860 FS,TOP1880 FS,TOP1900 FS,TOP1910 FS,TOP2000 FS,TOP2110 FS,TOP1060 FS,TOP1100 FS,TOP1190 FS,TOP1210 FS,TOP1310 FS,TOP1390 FS,TOP1400 FS,TOP1430 FS,TOP1470 FS,TOP1620 FS,TOP1670 FS,TOP1930 FS,TOP1980 FS,TOP2100 FS,TOP2140 FS,TOP2190 FS,TOP2260 FS,TOP1130 FS,TOP1180 FS,SC1230 FF,TOP1490 FS,TOP1750 FS,TOP1960 FS,TOP2020 FS,TOP2060 FS,TOP2250 FS,TOP2310 FS,TOP2330 FS,TOP1030 FS,TOP1170 FS,TOP1280 FS,TOP1290 FS,TOP1330 FS,TOP1340 FS,TOP1370 FS,TOP1410 FS,TOP1440 FS,TOP1460 FS,TOP1480 FS,TOP1560 FS,TOP1680 FS,TOP1690 FS,TOP1700 FS,TOP1740 FS,TOP1810 FS,TOP1820 FS,TOP1870 FS,TOP2070 FS,TOP2120 FS,TOP2160 FS,TOP2370 FS,TOP1070 FS,TOP1300 FS,TOP1380 FS,TOP1570 FS,TOP1640 FS,TOP1710 FS,TOP1720 FS,TOP1040 FS,TOP1110 FS,TOP1150 FS,TOP1160 FS,TOP1500 FS,TOP1660 FS,TOP1970 FS,TOP2010 FS,TOP2050 FS,TOP2130 FS,TOP1250 FS,00BHV70 FS,SUB-EIC-180 FS,KD_D02 FS,10BBE60 FS,10BH60 FS,00PUN80 FS,00GM-02-80 FS,00BZL-03-40 FS,10BZL-01-40 FS,00GA80 FS,00BAW-01-60 FS,00BAW-02-60 FS,00BAW-03-60 FS,00GHD-180 FS,GKB80 FS,00MBU90 FS,00GHC-01-80 FS,00BZL-02-40 FS,00PUS110 FS,00PUS90 FS","TOP1760,TOP1920,TOP1940,TOP2080,TOP2360,TOP1120,TOP1220,TOP1240,TOP1260,TOP1580,TOP1590,TOP1770,TOP1800,TOP1850,TOP1950,TOP2090,TOP2270,TOP2280,TOP2290,TOP2300,TOP2350,TOP1080,TOP1140,TOP1200,TOP1230,TOP1270,TOP1320,TOP1350,TOP1360,TOP1420,TOP1520,TOP1530,TOP1650,TOP1730,TOP1790,TOP1830,TOP1840,TOP1860,TOP1880,TOP1900,TOP1910,TOP2000,TOP2110,TOP1060,TOP1100,TOP1190,TOP1210,TOP1310,TOP1390,TOP1400,TOP1430,TOP1470,TOP1620,TOP1670,TOP1930,TOP1980,TOP2100,TOP2140,TOP2190,TOP2260,TOP1130,TOP1180,SC1230,TOP1490,TOP1750,TOP1960,TOP2020,TOP2060,TOP2250,TOP2310,TOP2330,TOP1030,TOP1170,TOP1280,TOP1290,TOP1330,TOP1340,TOP1370,TOP1410,TOP1440,TOP1460,TOP1480,TOP1560,TOP1680,TOP1690,TOP1700,TOP1740,TOP1810,TOP1820,TOP1870,TOP2070,TOP2120,TOP2160,TOP2370,TOP1070,TOP1300,TOP1380,TOP1570,TOP1640,TOP1710,TOP1720,TOP1040,TOP1110,TOP1150,TOP1160,TOP1500,TOP1660,TOP1970,TOP2010,TOP2050,TOP2130,TOP1250,00BHV70,SUB-EIC-180,KD_D02,10BBE60,10BH60,00PUN80,00GM-02-80,00BZL-03-40,10BZL-01-40,00GA80,00BAW-01-60,00BAW-02-60,00BAW-03-60,00GHD-180,GKB80,00MBU90,00GHC-01-80,00BZL-02-40,00PUS110,00PUS90","SC1310 FS","SC1310",245,291,245,291,57,68,57,68,91,,"CCGT D1_Integrated Programme Schedule;M&E;Milestones;Contract",132,1,0.0000640104,0.0002034588,0.3145473042,0,1.0,0.0000812387,0.904109589,0.0030769231,0.096625,0.0005221932,0.9948519949,0.0,1.0,0.0
1.3.4.5-17,SC1250,"Section 25 - Completion of all support to OEM during cold commissioning to allow first fire and first steam blow",7112,"CCGTD1_IPS",TT_FinMile,"58304",-,-,-,100,TK_Complete,14/04/2020,20/01/2020,14/04/2020,20/01/2020,"SC1190 FS,SC1170 FS,SC1230 FS","SC1190,SC1170,SC1230","SC1260 FS,SC1320 FS,TOP2890 FS","SC1260,SC1320,TOP2890",245,270,245,270,57,63,57,63,91,,"CCGT D1_Integrated Programme Schedule;M&E;Milestones;Contract",3,3,0.0002570355,0.0008138352,0.315768057,0,1.0,0.0000812387,0.0205479452,0.0092307692,0.388,0.0020887728,0.9987129987,0.0,1.0,0.0
1.3.4.5-18,SC1260,"Section 26 - Completion of all support to the OEM during hot commissioning and testing to allow commencement of operate",7112,"CCGTD1_IPS",TT_FinMile,"58304",-,-,-,100,TK_Complete,24/06/2020,30/06/2020,24/06/2020,30/06/2020,"SC1250 FS","SC1250","SC1330 FS","SC1330",256,293,256,293,59,68,59,68,91,,"CCGT D1_Integrated Programme Schedule;M&E;Milestones;Contract",1,1,0.0000643003,0.0002034588,0.3159715158,0,1.0,0.0000812387,0.0068493151,0.0030769231,0.0970625,0.0005221932,0.9993564994,0.0,1.0,0.0
1.3.4.5-19,SC1060-2,"Section 06.2 - Completion of TOP'S and successfully pass TOP Tests for Gas Turbine & Auxiliaries",7112,"CCGTD1_IPS",TT_FinMile,"58304",-,-,-,100,TK_Complete,17/12/2019,21/11/2019,17/12/2019,21/11/2019,"TOP1250 FS,TOP1290 FS,TOP1270 FS,TOP1310 FS,TOP1340 FS,TOP1320 FS,TOP1330 FS,TOP1380 FS,TOP1260 FS,TOP1370 FS,TOP1790 FS,TOP1300 FS","TOP1250,TOP1290,TOP1270,TOP1310,TOP1340,TOP1320,TOP1330,TOP1380,TOP1260,TOP1370,TOP1790,TOP1300","SC1230 FS,SC1300 FS","SC1230,SC1300",228,261,228,261,53,61,53,61,85,,"CCGT D1_Integrated Programme Schedule;M&E;Milestones;Contract",12,2,0.0000072443,0.0018311292,0.0728382503,0,1.0,0.0000812387,0.0821917808,0.0061538462,0.0109354167,0.0046997389,0.2303732304,0.0,1.0,0.0
1.3.4.5-20,SC1350,"Section 20 - Partial 6.6Kv Ready for Station Feed",7112,"CCGTD1_IPS",TT_FinMile,"58304",-,-,-,100,TK_Complete,31/08/2019,17/08/2019,31/08/2019,17/08/2019,"10BBE60 FS,CP-BZK7H25 FS,CP1BZK7J25 FS,CP-BZK7C25 FS","10BBE60,CP-BZK7H25,CP1BZK7J25,CP-BZK7C25","SC1230 FS,SC1270 FS","SC1230,SC1270",213,248,213,248,49,57,49,57,71,,"CCGT D1_Integrated Programme Schedule;M&E;Milestones;Contract",4,2,0.0000091459,0.0018311292,0.0215666328,0,1.0,0.0000812387,0.0273972603,0.0061538462,0.0138058494,0.0046997389,0.0682110682,0.0,1.0,0.0
1.4,58235,"CIVILS",7112,"CCGTD1_IPS",WBS,"58232",,,,100,Complete,31/03/2017,11/04/2017,30/06/2020,,,,,,87,125,256,,20,29,59,,,,"CCGT D1_Integrated Programme Schedule"
1.4.1,58797,"STATUTORY INSPECTION AND HANDOVER",7112,"CCGTD1_IPS",WBS,"58235",,,,100,Complete,,,,,,,,,0,,0,,0,,0,,,,"CCGT D1_Integrated Programme Schedule;CIVILS"
1.4.1.1,58800,"Final Completion Works and Handover",7112,"CCGTD1_IPS",WBS,"58797",,,,,NotStart,,,,,,,,,,,,,,,,,,,"CCGT D1_Integrated Programme Schedule;CIVILS;STATUTORY INSPECTION AND HANDOVER"
1.4.1.2,58799,"Ready for OP Inspection",7112,"CCGTD1_IPS",WBS,"58797",,,,,NotStart,,,,,,,,,,,,,,,,,,,"CCGT D1_Integrated Programme Schedule;CIVILS;STATUTORY INSPECTION AND HANDOVER"
1.4.1.3,58798,"Attendance for FS Inspection",7112,"CCGTD1_IPS",WBS,"58797",,,,,NotStart,,,,,,,,,,,,,,,,,,,"CCGT D1_Integrated Programme Schedule;CIVILS;STATUTORY INSPECTION AND HANDOVER"
1.4.2,58711,"CONSTRUCTION",7112,"CCGTD1_IPS",WBS,"58235",,,,100,Complete,28/06/2017,01/06/2017,30/06/2020,,,,,,100,132,256,,23,31,59,,,,"CCGT D1_Integrated Programme Schedule;CIVILS"
1.4.2.1,58795,"Works by Others",7112,"CCGTD1_IPS",WBS,"58711",,,,100,Complete,,,,,,,,,0,,0,,0,,0,,,,"CCGT D1_Integrated Programme Schedule;CIVILS;CONSTRUCTION"
1.4.2.1.1,58796,"M&E Installation Contractor",7112,"CCGTD1_IPS",WBS,"58795",,,,,NotStart,,,,,,,,,,,,,,,,,,,"CCGT D1_Integrated Programme Schedule;CIVILS;CONSTRUCTION;Works by Others"
1.4.2.2,58794,"BEAM Plus Requirements",7112,"CCGTD1_IPS",WBS,"58711",,,,,NotStart,,,,,,,,,,,,,,,,,,,"CCGT D1_Integrated Programme Schedule;CIVILS;CONSTRUCTION"
1.4.2.3,58793,"Other Additional Scopes with Post Tender Addendum No.1",7112,"CCGTD1_IPS",WBS,"58711",,,,100,Complete,26/01/2019,08/12/2018,20/08/2019,22/08/2019,,,,,182,212,211,248,42,49,49,58,,,"CCGT D1_Integrated Programme Schedule;CIVILS;CONSTRUCTION"
1.4.2.3-1,PTA10010,"Utility and Gas Trenches (as per drawing ref. BPB /OARU /GA /1 /VAA /D1 /161 Rev.4)",7112,"CCGTD1_IPS",TT_Task,"58793",-,-,-,100,TK_Complete,26/01/2019,12/12/2018,13/04/2019,14/02/2019,"EV057020 SS","EV057020","PTA10020 FS,1.3 FS,1.2 FS","PTA10020,1.3,1.2",182,212,193,221,42,49,45,51,46,,"CCGT D1_Integrated Programme Schedule;CIVILS;CONSTRUCTION;Other Additional Scopes with Post Tender Addendum No.1",1,3,0.0000001656,0.0008138352,0.0002034588,77,1.0,0.0001503957,0.0068493151,0.0092307692,0.00025,0.0020887728,0.0006435006,0.1726457399,1.0,0.0283369572
1.4.2.3-2,PTA10020,"Sleeperways (as per drawing ref. BPB /OARU /GA /1 /VAA /D1 /161 Rev.4)",7112,"CCGTD1_IPS",TT_Task,"58793",-,-,-,100,TK_Complete,01/08/2019,06/07/2019,20/08/2019,22/08/2019,"PTA10010 FS","PTA10010","SW1.1 FF","SW1.1",209,242,211,248,48,56,49,58,68,,"CCGT D1_Integrated Programme Schedule;CIVILS;CONSTRUCTION;Other Additional Scopes with Post Tender Addendum No.1",1,1,0.0000000828,0.0002034588,0.0004069176,19,0.0,0.000209244,0.0068493151,0.0030769231,0.000125,0.0005221932,0.0012870013,0.0426008969,0.0,0.0524499399
1.4.2.3-3,EV057010,"Event 057 /Utility and Gas Trenches - Chimney Road closed with TTM implemented",7112,"CCGTD1_IPS",TT_FinMile,"58793",-,-,-,100,TK_Complete,26/01/2019,08/12/2018,26/01/2019,08/12/2018,"","","","",182,212,182,212,42,49,42,49,46,,"CCGT D1_Integrated Programme Schedule;CIVILS;CONSTRUCTION;Other Additional Scopes with Post Tender Addendum No.1",0,0,0.0,0.0,0.0,0,1.0,0.0000812387,0.0,0.0,0.0,0.0,0.0,0.0,1.0,0.0
1.4.2.3-4,EV057020,"Event 057 /Utility and Gas Trenches - Excavation permit issued",7112,"CCGTD1_IPS",TT_Mile,"58793",-,-,-,100,TK_Complete,26/01/2019,12/12/2018,26/01/2019,12/12/2018,"","","PTA10010 SS","PTA10010",182,212,182,212,42,49,42,49,46,,"CCGT D1_Integrated Programme Schedule;CIVILS;CONSTRUCTION;Other Additional Scopes with Post Tender Addendum No.1",0,1,0.0,0.001017294,0.0,0,1.0,0.0000812387,0.0,0.0030769231,0.0,0.0026109661,0.0,0.0,1.0,0.0
1.4.2.4,58791,"Landscaping",7112,"CCGTD1_IPS",WBS,"58711",,,,100,Complete,02/01/2020,22/07/2019,14/02/2020,14/02/2020,,,,,231,244,237,274,53,57,55,63,,,"CCGT D1_Integrated Programme Schedule;CIVILS;CONSTRUCTION"
1.4.2.4.1,58792,"Soft and Hard Landscaping",7112,"CCGTD1_IPS",WBS,"58791",,,,100,Complete,02/01/2020,22/07/2019,14/02/2020,14/02/2020,,,,,231,244,237,274,53,57,55,63,,,"CCGT D1_Integrated Programme Schedule;CIVILS;CONSTRUCTION;Landscaping"
1.4.2.4.1-1,LAND0010,"Irrigation Points",7112,"CCGTD1_IPS",TT_Task,"58792",-,-,-,100,TK_Complete,01/02/2020,01/02/2020,14/02/2020,14/02/2020,"IRRI0040 FS","IRRI0040","SW1.1 FF","SW1.1",235,272,237,274,54,63,55,63,89,,"CCGT D1_Integrated Programme Schedule;CIVILS;CONSTRUCTION;Landscaping;Soft and Hard Landscaping",1,1,0.000002153,0.0002034588,0.0134282808,13,1.0,0.0006194961,0.0068493151,0.0030769231,0.00325,0.0005221932,0.0424710425,0.0291479821,1.0,0.2205499567
1.4.2.4.1-2,LAND0020XX,"Grasscrete Around Building",7112,"CCGTD1_IPS",TT_Task,"58792",-,-,-,100,TK_Complete,02/01/2020,22/07/2019,12/02/2020,18/12/2019,"COMM FS","COMM","","",231,244,237,265,53,57,55,62,87,,"CCGT D1_Integrated Programme Schedule;CIVILS;CONSTRUCTION;Landscaping;Soft and Hard Landscaping",1,0,0.0,0.0,0.0004069176,41,0.0,0.0000844318,0.0068493151,0.0,0.0,0.0,0.0012870013,0.0919282511,0.0,0.0013083505
1.4.2.5,58788,"External Civil Works",7112,"CCGTD1_IPS",WBS,"58711",,,,100,Complete,01/08/2019,22/07/2019,30/06/2020,,,,,,209,244,256,,48,57,59,,,,"CCGT D1_Integrated Programme Schedule;CIVILS;CONSTRUCTION"
1.4.2.5.1,58790,"EVA Roads",7112,"CCGTD1_IPS",WBS,"58788",,,,,NotStart,,,,,,,,,,,,,,,,,,,"CCGT D1_Integrated Programme Schedule;CIVILS;CONSTRUCTION;External Civil Works"
1.4.2.5.2,58789,"Roadworks",7112,"CCGTD1_IPS",WBS,"58788",,,,100,Complete,01/08/2019,22/07/2019,30/06/2020,30/06/2020,,,,,209,244,256,293,48,57,59,68,,,"CCGT D1_Integrated Programme Schedule;CIVILS;CONSTRUCTION;External Civil Works"
1.4.2.5.2-1,EXCL0020,"Roadworks - Concrete Pavements",7112,"CCGTD1_IPS",TT_Task,"58789",-,-,-,100,TK_Complete,01/08/2019,22/07/2019,20/09/2019,09/09/2019,"","","SW1.1 FF","SW1.1",209,244,216,251,48,57,50,58,68,,"CCGT D1_Integrated Programme Schedule;CIVILS;CONSTRUCTION;External Civil Works;Roadworks",0,1,0.0,0.0002034588,0.0,50,1.0,0.0000812387,0.0,0.0030769231,0.0,0.0005221932,0.0,0.1121076233,1.0,0.0
1.4.2.5.2-2,EXCL0030,"Roadworks - Road Marking and signs",7112,"CCGTD1_IPS",TT_Task,"58789",-,-,-,100,TK_Complete,04/06/2020,04/06/2020,11/06/2020,11/06/2020,"13584 FS","13584","EXCL0040 FS,EXCL0040 FF","EXCL0040,EXCL0040",253,289,254,290,59,67,59,67,91,,"CCGT D1_Integrated Programme Schedule;CIVILS;CONSTRUCTION;External Civil Works;Roadworks",1,1,0.0000000828,0.0006103764,0.0002034588,7,1.0,0.0001215803,0.0068493151,0.0030769231,0.000125,0.0015665796,0.0006435006,0.0156950673,1.0,0.0165298917
1.4.2.5.2-3,EXCL0040,"Roadworks - Install Directonal Signage",7112,"CCGTD1_IPS",TT_Task,"58789",-,-,-,100,TK_Complete,12/06/2020,12/06/2020,30/06/2020,30/06/2020,"EXCL0030 FS,EXCL0030 FF","EXCL0030,EXCL0030","EXCL0050 FF","EXCL0050",254,291,256,293,59,67,59,68,91,,"CCGT D1_Integrated Programme Schedule;CIVILS;CONSTRUCTION;External Civil Works;Roadworks",1,1,0.0000001242,0.0004069176,0.0004069176,18,1.0,0.0001847239,0.0068493151,0.0030769231,0.0001875,0.0010443864,0.0012870013,0.0403587444,1.0,0.0424028638
1.4.2.5.2-4,EXCL0050,"Roadworks - Install Street Furniture",7112,"CCGTD1_IPS",TT_Task,"58789",-,-,-,100,TK_Complete,12/06/2020,12/06/2020,30/06/2020,30/06/2020,"EXCL0040 FF","EXCL0040","13586 FF,SW1.1 FF","13586,SW1.1",254,291,256,293,59,67,59,68,91,,"CCGT D1_Integrated Programme Schedule;CIVILS;CONSTRUCTION;External Civil Works;Roadworks",1,1,0.0000000828,0.0002034588,0.0006103764,18,1.0,0.0002384892,0.0068493151,0.0030769231,0.000125,0.0005221932,0.0019305019,0.0403587444,1.0,0.0644330798
1.4.2.6,58785,"Sitewide Drainage and Lighting",7112,"CCGTD1_IPS",WBS,"58711",,,,100,Complete,01/04/2019,16/07/2018,04/01/2020,30/06/2020,,,,,191,191,231,293,44,44,54,68,,,"CCGT D1_Integrated Programme Schedule;CIVILS;CONSTRUCTION"
1.4.2.6.1,58787,"Street Lighting",7112,"CCGTD1_IPS",WBS,"58785",,,,100,Complete,04/10/2019,02/01/2019,04/01/2020,30/06/2020,,,,,218,215,231,293,50,50,54,68,,,"CCGT D1_Integrated Programme Schedule;CIVILS;CONSTRUCTION;Sitewide Drainage and Lighting"
1.4.2.6.2,58786,"Storm Water Drainage",7112,"CCGTD1_IPS",WBS,"58785",,,,100,Complete,01/04/2019,16/07/2018,13/08/2019,24/01/2020,,,,,191,191,210,271,44,44,49,63,,,"CCGT D1_Integrated Programme Schedule;CIVILS;CONSTRUCTION;Sitewide Drainage and Lighting"
1.4.2.6.2-1,13584,"Provide/Extend/Relocate Sitewide Drainage System",7112,"CCGTD1_IPS",TT_Task,"58786",-,-,-,100,TK_Complete,01/04/2019,16/07/2018,13/08/2019,24/01/2020,"","","EXCL0010 FF,EXCL0030 FS,DEF_WK10 FS","EXCL0010,EXCL0030,DEF_WK10",191,191,210,271,44,44,49,63,52,,"CCGT D1_Integrated Programme Schedule;CIVILS;CONSTRUCTION;Sitewide Drainage and Lighting;Storm Water Drainage",0,2,0.0,0.001017294,0.0,134,0.0,0.0000812387,0.0,0.0061538462,0.0,0.0026109661,0.0,0.3004484305,0.0,0.0
1.4.2.7,58784,"Deferred Works",7112,"CCGTD1_IPS",WBS,"58711",,,,100,Complete,26/11/2018,15/11/2018,28/05/2020,28/05/2020,,,,,173,208,252,288,40,48,58,67,,,"CCGT D1_Integrated Programme Schedule;CIVILS;CONSTRUCTION"
1.4.2.7-1,DEF_WK09,"DW09 - Construct UG Neutralization Tank",7112,"CCGTD1_IPS",TT_Task,"58784",-,-,-,100,TK_Complete,26/11/2018,15/11/2018,31/12/2018,31/12/2018,"","","DBSG0010 FF,3.2 FS","DBSG0010,3.2",173,208,178,215,40,48,41,50,40,,"CCGT D1_Integrated Programme Schedule;CIVILS;CONSTRUCTION;Deferred Works",0,2,0.0,0.001017294,0.0,35,0.0,0.0000812387,0.0,0.0061538462,0.0,0.0026109661,0.0,0.0784753363,0.0,0.0
1.4.2.7-2,DEF_WK10,"DW10 - Final Reinstatement of Access Roads and Pavement at Turbine Hall and HRSG Area (i.e. wearing course)",7112,"CCGTD1_IPS",TT_Task,"58784",-,-,-,100,TK_Complete,23/05/2020,23/05/2020,28/05/2020,28/05/2020,"EV015010 SS,13584 FS","EV015010,13584","SW1.1 FS","SW1.1",251,288,252,288,58,67,58,67,91,,"CCGT D1_Integrated Programme Schedule;CIVILS;CONSTRUCTION;Deferred Works",2,1,0.0000000621,0.0002034588,0.0004069176,5,1.0,0.0001202243,0.0136986301,0.0030769231,0.00009375,0.0005221932,0.0012870013,0.0112107623,1.0,0.0159742651
1.4.2.8,58783,"A&A Works",7112,"CCGTD1_IPS",WBS,"58711",,,,100,Complete,03/02/2020,03/02/2020,22/02/2020,22/02/2020,,,,,235,272,238,275,55,63,55,64,,,"CCGT D1_Integrated Programme Schedule;CIVILS;CONSTRUCTION"
1.4.2.8-1,CLPCCR10,"Works in Existing Central Control Room in Control Block Building and Associated Works (indicative only, TBC)",7112,"CCGTD1_IPS",TT_Task,"58783",-,-,-,100,TK_Complete,03/02/2020,03/02/2020,22/02/2020,22/02/2020,"COMM FS,THEL0060 FS","COMM,THEL0060","SW1.1 FF","SW1.1",235,272,238,275,55,63,55,64,89,,"CCGT D1_Integrated Programme Schedule;CIVILS;CONSTRUCTION;A&A Works",2,1,0.0000001449,0.0002034588,0.003051882,19,1.0,0.0002511137,0.0136986301,0.0030769231,0.00021875,0.0005221932,0.0096525097,0.0426008969,1.0,0.0696059504
1.4.2.9,58765,"Power Island - Other External Areas",7112,"CCGTD1_IPS",WBS,"58711",,,,100,Complete,17/10/2017,13/10/2017,12/03/2020,,,,,,115,152,241,,27,35,56,,,,"CCGT D1_Integrated Programme Schedule;CIVILS;CONSTRUCTION"
1.4.2.9.1,58782,"Effluent Disposal Pits",7112,"CCGTD1_IPS",WBS,"58765",,,,,NotStart,,,,,,,,,,,,,,,,,,,"CCGT D1_Integrated Programme Schedule;CIVILS;CONSTRUCTION;Power Island - Other External Areas"
1.4.2.9.2,58781,"Chem.Unloading Bay, Urea Sol.Storage Tanks, Urea Depos.Chamber, Urea Unloading & Ammonia Dosing",7112,"CCGTD1_IPS",WBS,"58765",,,,100,Complete,26/01/2019,08/12/2018,22/02/2019,11/01/2019,,,,,182,212,186,217,42,49,43,50,,,"CCGT D1_Integrated Programme Schedule;CIVILS;CONSTRUCTION;Power Island - Other External Areas"
1.4.2.9.2-1,FTP30010,"Construct footings for Chemical Unloading Bay and Urea Factilities",7112,"CCGTD1_IPS",TT_Task,"58781",-,-,-,100,TK_Complete,26/01/2019,14/12/2018,22/02/2019,11/01/2019,"CLPSUP15 FS,SBOE2BA8 FS,SBOE3BA8 FF,EV049010 FS,EV049020 FS","CLPSUP15,SBOE2BA8,SBOE3BA8,EV049010,EV049020","1.1 FS","1.1",182,213,186,217,42,49,43,50,45,,"CCGT D1_Integrated Programme Schedule;CIVILS;CONSTRUCTION;Power Island - Other External Areas;Chem.Unloading Bay, Urea Sol.Storage Tanks, Urea Depos.Chamber, Urea Unloading & Ammonia Dosing",5,1,0.0000004554,0.0002034588,0.0022380468,27,0.8,0.0002595251,0.0342465753,0.0030769231,0.0006875,0.0005221932,0.0070785071,0.0605381166,0.8,0.0730525239
1.4.2.9.2-2,EV049010,"Event 049 / Urea Facilities / KSS hand back over the area",7112,"CCGTD1_IPS",TT_FinMile,"58781",-,-,-,100,TK_Complete,26/01/2019,08/12/2018,26/01/2019,08/12/2018,"","","FTP30010 FS","FTP30010",182,212,182,212,42,49,42,49,45,,"CCGT D1_Integrated Programme Schedule;CIVILS;CONSTRUCTION;Power Island - Other External Areas;Chem.Unloading Bay, Urea Sol.Storage Tanks, Urea Depos.Chamber, Urea Unloading & Ammonia Dosing",0,1,0.0,0.0004069176,0.0,0,1.0,0.0000812387,0.0,0.0030769231,0.0,0.0010443864,0.0,0.0,1.0,0.0
1.4.2.9.2-3,EV049020,"Event 049 / Urea Facilities / Set up and conduct plate load test no. PL1",7112,"CCGTD1_IPS",TT_Task,"58781",-,-,-,100,TK_Complete,26/01/2019,09/12/2018,26/01/2019,13/12/2018,"","","EV054010 SS,EV054010 FF,FTP30010 FS","EV054010,EV054010,FTP30010",182,212,182,212,42,49,42,49,46,,"CCGT D1_Integrated Programme Schedule;CIVILS;CONSTRUCTION;Power Island - Other External Areas;Chem.Unloading Bay, Urea Sol.Storage Tanks, Urea Depos.Chamber, Urea Unloading & Ammonia Dosing",0,1,0.0,0.0004069176,0.0,0,0.8,0.0000812387,0.0,0.0030769231,0.0,0.0010443864,0.0,0.0,0.8,0.0
1.4.2.9.3,58780,"Fuel Gas Purge Air, Gas Receiving & Fuel Gas Blending",7112,"CCGTD1_IPS",WBS,"58765",,,,100,Complete,26/01/2019,09/12/2018,11/01/2020,30/10/2019,,,,,182,212,232,258,42,49,54,60,,,"CCGT D1_Integrated Programme Schedule;CIVILS;CONSTRUCTION;Power Island - Other External Areas"
1.4.2.9.3-1,FTP20005,"Fuel Gas Purger Air, GRS & Fuel Gas Blending - Underground drainage",7112,"CCGTD1_IPS",TT_Task,"58780",-,-,-,100,TK_Complete,26/01/2019,05/01/2019,15/02/2019,16/01/2019,"EV050010 FS","EV050010","FTP20010 FS,FTP20010 FF","FTP20010,FTP20010",182,216,185,217,42,50,43,50,45,,"CCGT D1_Integrated Programme Schedule;CIVILS;CONSTRUCTION;Power Island - Other External Areas;Fuel Gas Purge Air, Gas Receiving & Fuel Gas Blending",1,1,0.0000003312,0.0016276704,0.0002034588,20,1.0,0.0001503957,0.0068493151,0.0030769231,0.0005,0.0041775457,0.0006435006,0.0448430493,1.0,0.0283369572
1.4.2.9.3-2,FTP20010,"Fuel Gas Purge Air System - Construct foundation",7112,"CCGTD1_IPS",TT_Task,"58780",-,-,-,100,TK_Complete,16/02/2019,17/01/2019,01/03/2019,29/01/2019,"CLPSUP15 FS,SBOE2BA8 FS,SBOE3BA8 FF,FTP20005 FS,FTP20005 FF","CLPSUP15,SBOE2BA8,SBOE3BA8,FTP20005,FTP20005","FTP20020 FF","FTP20020",185,217,187,219,43,50,43,51,47,,"CCGT D1_Integrated Programme Schedule;CIVILS;CONSTRUCTION;Power Island - Other External Areas;Fuel Gas Purge Air, Gas Receiving & Fuel Gas Blending",4,1,0.0000025463,0.0014242116,0.0022380468,13,1.0,0.00022849,0.0273972603,0.0030769231,0.00384375,0.0036553525,0.0070785071,0.0291479821,1.0,0.0603359371
1.4.2.9.3-3,FTP20020,"Gas Receiving & Fuel Gas Blending Station - Construct foundation",7112,"CCGTD1_IPS",TT_Task,"58780",-,-,-,100,TK_Complete,28/01/2019,17/01/2019,09/02/2019,29/01/2019,"FTP20010 FF","FTP20010","FTP20030 FF,ODPT0010 FS","FTP20030,ODPT0010",182,217,184,219,42,50,43,51,46,,"CCGT D1_Integrated Programme Schedule;CIVILS;CONSTRUCTION;Power Island - Other External Areas;Fuel Gas Purge Air, Gas Receiving & Fuel Gas Blending",1,2,0.0000023393,0.0012207528,0.0024415056,12,1.0,0.0002757636,0.0068493151,0.0061538462,0.00353125,0.0031331593,0.0077220077,0.0269058296,1.0,0.0797062112
1.4.2.9.3-4,FTP20030,"Gas Receiving & Fuel Gas Blending Station - Construct fire wall",7112,"CCGTD1_IPS",TT_Task,"58780",-,-,-,100,TK_Complete,26/01/2019,17/01/2019,08/02/2019,29/01/2019,"FTP20020 FF","FTP20020","FTP20040 FS,1.4 FS","FTP20040,1.4",182,217,184,219,42,50,43,51,45,,"CCGT D1_Integrated Programme Schedule;CIVILS;CONSTRUCTION;Power Island - Other External Areas;Fuel Gas Purge Air, Gas Receiving & Fuel Gas Blending",1,2,0.0000010558,0.0006103764,0.0026449644,13,1.0,0.0002033603,0.0068493151,0.0061538462,0.00159375,0.0015665796,0.0083655084,0.0291479821,1.0,0.0500390777
1.4.2.9.3-5,FTP20040,"Gas Receiving & Fuel Gas Blending Station - Erect wire mech fence",7112,"CCGTD1_IPS",TT_Task,"58780",-,-,-,100,TK_Complete,02/01/2020,28/10/2019,11/01/2020,30/10/2019,"FTP20030 FS,GFFE0030 FS","FTP20030,GFFE0030","SW1.1 FF","SW1.1",231,258,232,258,53,60,54,60,87,,"CCGT D1_Integrated Programme Schedule;CIVILS;CONSTRUCTION;Power Island - Other External Areas;Fuel Gas Purge Air, Gas Receiving & Fuel Gas Blending",2,1,0.000000207,0.0002034588,0.0083418108,9,1.0,0.0006890599,0.0136986301,0.0030769231,0.0003125,0.0005221932,0.0263835264,0.0201793722,1.0,0.2490535925
1.4.2.9.3-6,EV050010,"Event 050 / Gas Blending / KSS hand back over the area",7112,"CCGTD1_IPS",TT_FinMile,"58780",-,-,-,100,TK_Complete,26/01/2019,04/01/2019,26/01/2019,04/01/2019,"","","FTP20005 FS","FTP20005",182,216,182,216,42,50,42,50,45,,"CCGT D1_Integrated Programme Schedule;CIVILS;CONSTRUCTION;Power Island - Other External Areas;Fuel Gas Purge Air, Gas Receiving & Fuel Gas Blending",0,1,0.0,0.0018311292,0.0,0,1.0,0.0000812387,0.0,0.0030769231,0.0,0.0046997389,0.0,0.0,1.0,0.0
1.4.2.9.4,58779,"CEMS Panel, Compressed Air, N2 Blanket, Emergency CO2 & H2 Supply",7112,"CCGTD1_IPS",WBS,"58765",,,,100,Complete,31/03/2019,19/03/2019,26/08/2019,29/06/2019,,,,,191,226,212,241,44,52,49,56,,,"CCGT D1_Integrated Programme Schedule;CIVILS;CONSTRUCTION;Power Island - Other External Areas"
1.4.2.9.4-1,FTP10010,"Construct footings of Urea Decomposition Chamber to the East of HRSG",7112,"CCGTD1_IPS",TT_Task,"58779",-,-,-,100,TK_Complete,01/08/2019,03/06/2019,26/08/2019,29/06/2019,"CLPSUP15 FS,SBOE2BA8 FS,SBOE3BA8 FF,EV053010 FS,FTP10005 FS","CLPSUP15,SBOE2BA8,SBOE3BA8,EV053010,FTP10005","4.2 FS","4.2",209,237,212,241,48,55,49,56,68,,"CCGT D1_Integrated Programme Schedule;CIVILS;CONSTRUCTION;Power Island - Other External Areas;CEMS Panel, Compressed Air, N2 Blanket, Emergency CO2 & H2 Supply",5,1,0.0000004968,0.0002034588,0.0024415056,25,0.8,0.0003154125,0.0342465753,0.0030769231,0.00075,0.0005221932,0.0077220077,0.0560538117,0.8,0.0959522763
1.4.2.9.4-2,EV052010,"Event 052 / Foundation to the South of HRSG / KSS hand back over the area",7112,"CCGTD1_IPS",TT_FinMile,"58779",-,-,-,100,TK_Complete,31/03/2019,19/03/2019,31/03/2019,19/03/2019,"","","FTP10005 FS","FTP10005",191,226,191,226,44,52,44,52,49,,"CCGT D1_Integrated Programme Schedule;CIVILS;CONSTRUCTION;Power Island - Other External Areas;CEMS Panel, Compressed Air, N2 Blanket, Emergency CO2 & H2 Supply",0,1,0.0,0.0008138352,0.0,0,1.0,0.0000812387,0.0,0.0030769231,0.0,0.0020887728,0.0,0.0,1.0,0.0
1.4.2.9.4-3,EV053010,"Event 053 / Foundation to the East of HRSG / KSS hand back over the area",7112,"CCGTD1_IPS",TT_FinMile,"58779",-,-,-,100,TK_Complete,31/03/2019,19/03/2019,31/03/2019,19/03/2019,"","","FTP10010 FS","FTP10010",191,226,191,226,44,52,44,52,49,,"CCGT D1_Integrated Programme Schedule;CIVILS;CONSTRUCTION;Power Island - Other External Areas;CEMS Panel, Compressed Air, N2 Blanket, Emergency CO2 & H2 Supply",0,1,0.0,0.0004069176,0.0,0,1.0,0.0000812387,0.0,0.0030769231,0.0,0.0010443864,0.0,0.0,1.0,0.0
1.4.2.9.4-4,FTP10005,"Construct footings of False Start & GT Water Tank to the South of HRSG",7112,"CCGTD1_IPS",TT_Task,"58779",-,-,-,100,TK_Complete,01/04/2019,20/03/2019,18/05/2019,12/04/2019,"EV052010 FS","EV052010","FTP10010 FS,4.1 FS","FTP10010,4.1",191,226,198,230,44,52,46,53,52,,"CCGT D1_Integrated Programme Schedule;CIVILS;CONSTRUCTION;Power Island - Other External Areas;CEMS Panel, Compressed Air, N2 Blanket, Emergency CO2 & H2 Supply",1,2,0.0000001242,0.0006103764,0.0002034588,47,1.0,0.0001503957,0.0068493151,0.0061538462,0.0001875,0.0015665796,0.0006435006,0.1053811659,1.0,0.0283369572
1.4.2.9.5,58778,"Outdoor Pipe Trench incl' 10UEz01, 10UEZ02, 10UGZ",7112,"CCGTD1_IPS",WBS,"58765",,,,100,Complete,26/01/2019,04/01/2019,13/04/2019,14/02/2019,,,,,182,216,193,221,42,50,45,51,,,"CCGT D1_Integrated Programme Schedule;CIVILS;CONSTRUCTION;Power Island - Other External Areas"
1.4.2.9.5-1,ODPT0010,"Outdoor Pipe Trench - Construct pipe trench",7112,"CCGTD1_IPS",TT_Task,"58778",-,-,-,100,TK_Complete,01/04/2019,02/02/2019,13/04/2019,14/02/2019,"CLPSUP15 FS,EV051010 FS,FTP20020 FS","CLPSUP15,EV051010,FTP20020","1.5 FS","1.5",191,220,193,221,44,51,45,51,52,,"CCGT D1_Integrated Programme Schedule;CIVILS;CONSTRUCTION;Power Island - Other External Areas;Outdoor Pipe Trench incl' 10UEz01, 10UEZ02, 10UGZ",3,1,0.0000005797,0.0002034588,0.0028484232,12,1.0,0.0002683758,0.0205479452,0.0030769231,0.000875,0.0005221932,0.009009009,0.0269058296,1.0,0.076679049
1.4.2.9.5-2,EV051010,"Event 051 / Utilities Trench / KSS hand back over the area",7112,"CCGTD1_IPS",TT_FinMile,"58778",-,-,-,100,TK_Complete,26/01/2019,04/01/2019,26/01/2019,04/01/2019,"","","ODPT0010 FS","ODPT0010",182,216,182,216,42,50,42,50,45,,"CCGT D1_Integrated Programme Schedule;CIVILS;CONSTRUCTION;Power Island - Other External Areas;Outdoor Pipe Trench incl' 10UEz01, 10UEZ02, 10UGZ",0,1,0.0,0.0004069176,0.0,0,1.0,0.0000812387,0.0,0.0030769231,0.0,0.0010443864,0.0,0.0,1.0,0.0
1.4.2.9.6,58777,"Effluent Storage Tanks",7112,"CCGTD1_IPS",WBS,"58765",,,,,NotStart,,,,,,,,,,,,,,,,,,,"CCGT D1_Integrated Programme Schedule;CIVILS;CONSTRUCTION;Power Island - Other External Areas"
1.4.2.9.7,58776,"Close Cooling Water Structure",7112,"CCGTD1_IPS",WBS,"58765",,,,100,Complete,09/04/2019,25/02/2019,29/04/2019,04/03/2019,,,,,192,223,195,224,45,52,45,52,,,"CCGT D1_Integrated Programme Schedule;CIVILS;CONSTRUCTION;Power Island - Other External Areas"
1.4.2.9.7-1,CCWS0010,"Close Cooling Water Structure - Construct foundation and plinths",7112,"CCGTD1_IPS",TT_Task,"58776",-,-,-,100,TK_Complete,09/04/2019,25/02/2019,29/04/2019,04/03/2019,"CLPSUP15 FS,SBOE2BA8 FS,SBOE3BA8 FF,PR010010 FS","CLPSUP15,SBOE2BA8,SBOE3BA8,PR010010","3.6 FS","3.6",192,223,195,224,45,52,45,52,53,,"CCGT D1_Integrated Programme Schedule;CIVILS;CONSTRUCTION;Power Island - Other External Areas;Close Cooling Water Structure",4,1,0.0000001863,0.0002034588,0.0130213632,20,1.0,0.0002741441,0.0273972603,0.0030769231,0.00028125,0.0005221932,0.0411840412,0.0448430493,1.0,0.0790426189
1.4.2.9.8,58775,"Gas Final Filter Equipment",7112,"CCGTD1_IPS",WBS,"58765",,,,100,Complete,26/11/2018,07/09/2018,15/01/2020,18/10/2019,,,,,173,199,233,257,40,46,54,59,,,"CCGT D1_Integrated Programme Schedule;CIVILS;CONSTRUCTION;Power Island - Other External Areas"
1.4.2.9.8-1,EV041010,"Event 041 - Crane access for KSS (original thought was three months)",7112,"CCGTD1_IPS",TT_Task,"58775",-,-,-,100,TK_Complete,26/11/2018,07/09/2018,23/02/2019,15/04/2019,"DPT20168 FF","DPT20168","GFFE0010 FS","GFFE0010",173,199,186,230,40,46,43,53,40,,"CCGT D1_Integrated Programme Schedule;CIVILS;CONSTRUCTION;Power Island - Other External Areas;Gas Final Filter Equipment",1,1,0.0,0.0012207528,0.001017294,89,0.0,0.0002659563,0.0068493151,0.0030769231,0.0,0.0031331593,0.0032175032,0.1995515695,0.0,0.0756876625
1.4.2.9.8-2,GFFE0010,"Gas Final Filter Equip - Construct 1.1m deep foundation",7112,"CCGTD1_IPS",TT_Task,"58775",-,-,-,100,TK_Complete,02/05/2019,18/04/2019,27/05/2019,04/05/2019,"CLPSUP15 FS,SBOE2BA8 FS,SBOE3BA8 FF,FWPT0010 FS,EV041010 FS,DPT20168 FS","CLPSUP15,SBOE2BA8,SBOE3BA8,FWPT0010,EV041010,DPT20168","GFFE0020 FS,2.5 FF","GFFE0020,2.5",196,230,199,233,45,53,46,54,57,,"CCGT D1_Integrated Programme Schedule;CIVILS;CONSTRUCTION;Power Island - Other External Areas;Gas Final Filter Equipment",6,2,0.0000065211,0.001017294,0.0067141404,25,1.0,0.0004950149,0.0410958904,0.0061538462,0.00984375,0.0026109661,0.0212355212,0.0560538117,1.0,0.1695439983
1.4.2.9.8-3,GFFE0020,"Gas Final Filter Equip - Construct 1m high bund wall all around",7112,"CCGTD1_IPS",TT_Task,"58775",-,-,-,100,TK_Complete,05/06/2019,06/05/2019,20/06/2019,02/09/2019,"GFFE0010 FS","GFFE0010","GFFE0030 FS","GFFE0030",201,233,203,250,46,54,47,58,61,,"CCGT D1_Integrated Programme Schedule;CIVILS;CONSTRUCTION;Power Island - Other External Areas;Gas Final Filter Equipment",1,1,0.0000039127,0.0006103764,0.0069175992,15,0.0,0.0005028204,0.0068493151,0.0030769231,0.00590625,0.0015665796,0.0218790219,0.033632287,0.0,0.1727422907
1.4.2.9.8-4,GFFE0030,"Gas Final Filter Equip - Erect wire mesh security fence after filter install",7112,"CCGTD1_IPS",TT_Task,"58775",-,-,-,100,TK_Complete,02/01/2020,12/10/2019,15/01/2020,18/10/2019,"GFFE0020 FS","GFFE0020","SW1.1 FF,FTP20040 FS","SW1.1,FTP20040",231,256,233,257,53,59,54,59,87,,"CCGT D1_Integrated Programme Schedule;CIVILS;CONSTRUCTION;Power Island - Other External Areas;Gas Final Filter Equipment",1,2,0.0000025877,0.0004069176,0.007121058,13,1.0,0.0005095945,0.0068493151,0.0061538462,0.00390625,0.0010443864,0.0225225225,0.0291479821,1.0,0.175517985
1.4.2.9.9,58773,"UG Rainwater Collection Pump Room / Emergency Power Generator",7112,"CCGTD1_IPS",WBS,"58765",,,,100,Complete,17/10/2017,13/10/2017,12/03/2020,24/01/2020,,,,,115,152,241,271,27,35,56,63,,,"CCGT D1_Integrated Programme Schedule;CIVILS;CONSTRUCTION;Power Island - Other External Areas"
1.4.2.9.9-1,EV047010,"RW Collection Pump Rm - Stratum Requirement (ROI#182)",7112,"CCGTD1_IPS",TT_Task,"58773",-,-,-,100,TK_Complete,26/11/2018,10/10/2018,12/12/2018,26/10/2018,"","","RWPR0020 FS","RWPR0020",173,203,176,206,40,47,41,48,40,,"CCGT D1_Integrated Programme Schedule;CIVILS;CONSTRUCTION;Power Island - Other External Areas;UG Rainwater Collection Pump Room / Emergency Power Generator",0,1,0.0,0.0089521872,0.0,16,1.0,0.0000812387,0.0,0.0030769231,0.0,0.0229765013,0.0,0.0358744395,1.0,0.0
1.4.2.9.9-2,EV048010,"RW Collection Pump Rm - Install re-prop below S1 as per Zone A (4th) amendment",7112,"CCGTD1_IPS",TT_Task,"58773",-,-,-,100,TK_Complete,16/02/2019,05/12/2018,22/02/2019,15/12/2018,"RWPR0185 SS","RWPR0185","DPT10135 FF,RWPR0180 FS","DPT10135,RWPR0180",185,211,186,213,43,49,43,49,47,,"CCGT D1_Integrated Programme Schedule;CIVILS;CONSTRUCTION;Power Island - Other External Areas;UG Rainwater Collection Pump Room / Emergency Power Generator",1,2,0.0000058794,0.004069176,0.0107833164,6,0.4,0.0001133617,0.0068493151,0.0061538462,0.008875,0.0104438642,0.0341055341,0.0134529148,0.4,0.0131623145
1.4.2.9.9-3,RWPR0020,"RW Collection Pump Rm - Vertical blinding to the profile of base slab and shallow sump pit",7112,"CCGTD1_IPS",TT_Task,"58773",-,-,-,100,TK_Complete,26/11/2018,31/10/2018,28/11/2018,31/10/2018,"EV047010 FS","EV047010","RWPR0030 FS","RWPR0030",173,206,174,206,40,48,40,48,40,,"CCGT D1_Integrated Programme Schedule;CIVILS;CONSTRUCTION;Power Island - Other External Areas;UG Rainwater Collection Pump Room / Emergency Power Generator",1,1,0.0000017804,0.0087487284,0.0002034588,2,1.0,0.0001503957,0.0068493151,0.0030769231,0.0026875,0.0224543081,0.0006435006,0.0044843049,1.0,0.0283369572
1.4.2.9.9-4,RWPR0040,"RW Collection Pump Rm - Fix rebar for base slab and shallow pits",7112,"CCGTD1_IPS",TT_Task,"58773",-,-,-,100,TK_Complete,28/11/2018,01/11/2018,01/12/2018,07/11/2018,"RWPR0030 FS,SBOE2BA8 FS,SBOE3BA8 FF","RWPR0030,SBOE2BA8,SBOE3BA8","RWPR0050 FS","RWPR0050",174,206,174,207,40,48,40,48,41,,"CCGT D1_Integrated Programme Schedule;CIVILS;CONSTRUCTION;Power Island - Other External Areas;UG Rainwater Collection Pump Room / Emergency Power Generator",3,1,0.0000169342,0.0083418108,0.0022380468,3,0.8,0.0002625068,0.0205479452,0.0030769231,0.0255625,0.0214099217,0.0070785071,0.0067264574,0.8,0.0742742674
1.4.2.9.9-5,RWPR0050,"RW Collection Pump Rm - Close formwork (if any)",7112,"CCGTD1_IPS",TT_Task,"58773",-,-,-,100,TK_Complete,03/12/2018,03/11/2018,03/12/2018,07/11/2018,"RWPR0040 FS","RWPR0040","RWPR0060 FS","RWPR0060",174,207,174,207,40,48,40,48,41,,"CCGT D1_Integrated Programme Schedule;CIVILS;CONSTRUCTION;Power Island - Other External Areas;UG Rainwater Collection Pump Room / Emergency Power Generator",1,1,0.0000181349,0.008138352,0.0024415056,0,0.6,0.0000812387,0.0068493151,0.0030769231,0.027375,0.0208877285,0.0077220077,0.0,0.6,0.0
1.4.2.9.9-6,RWPR0060,"RW Collection Pump Rm - Pour base slab and shallow pit",7112,"CCGTD1_IPS",TT_Task,"58773",-,-,-,100,TK_Complete,04/12/2018,08/11/2018,04/12/2018,08/11/2018,"RWPR0050 FS","RWPR0050","DPT10110 FF,RWPR0070 FS","DPT10110,RWPR0070",174,207,174,207,40,48,40,48,41,,"CCGT D1_Integrated Programme Schedule;CIVILS;CONSTRUCTION;Power Island - Other External Areas;UG Rainwater Collection Pump Room / Emergency Power Generator",1,2,0.0000192528,0.0079348932,0.0026449644,0,1.0,0.0000812387,0.0068493151,0.0061538462,0.0290625,0.0203655352,0.0083655084,0.0,1.0,0.0
1.4.2.9.9-7,RWPR0070,"RW Collection Pump Rm - Prepare CJ",7112,"CCGTD1_IPS",TT_Task,"58773",-,-,-,100,TK_Complete,28/11/2018,09/11/2018,28/11/2018,09/11/2018,"RWPR0060 FS","RWPR0060","RWPR0080 FS","RWPR0080",174,208,174,208,40,48,40,48,41,,"CCGT D1_Integrated Programme Schedule;CIVILS;CONSTRUCTION;Power Island - Other External Areas;UG Rainwater Collection Pump Room / Emergency Power Generator",1,1,0.0000090675,0.0069175992,0.0028484232,0,1.0,0.0000812387,0.0068493151,0.0030769231,0.0136875,0.0177545692,0.009009009,0.0,1.0,0.0
1.4.2.9.9-8,RWPR0080,"RW Collection Pump Rm - Erect formwork for basement wall and staircase (Part 1 of 2)",7112,"CCGTD1_IPS",TT_Task,"58773",-,-,-,100,TK_Complete,29/11/2018,14/11/2018,03/12/2018,16/11/2018,"RWPR0070 FS,DPT10110 FF","RWPR0070,DPT10110","RWPR0090 FF","RWPR0090",174,208,174,209,40,48,40,48,41,,"CCGT D1_Integrated Programme Schedule;CIVILS;CONSTRUCTION;Power Island - Other External Areas;UG Rainwater Collection Pump Room / Emergency Power Generator",2,1,0.0000624371,0.0067141404,0.0095625636,4,1.0,0.0002168828,0.0136986301,0.0030769231,0.09425,0.017232376,0.0302445302,0.0089686099,1.0,0.055579917
1.4.2.9.9-9,RWPR0090,"RW Collection Pump Rm - Fix rebar for basement wall and staircase (Part 1 of 2)",7112,"CCGTD1_IPS",TT_Task,"58773",-,-,-,100,TK_Complete,01/12/2018,16/11/2018,05/12/2018,22/11/2018,"RWPR0080 FF","RWPR0080","RWPR0100 FS","RWPR0100",174,209,175,209,40,48,40,48,41,,"CCGT D1_Integrated Programme Schedule;CIVILS;CONSTRUCTION;Power Island - Other External Areas;UG Rainwater Collection Pump Room / Emergency Power Generator",1,1,0.000061816,0.0065106816,0.0097660224,4,0.6,0.0002666998,0.0068493151,0.0030769231,0.0933125,0.0167101828,0.0308880309,0.0089686099,0.6,0.0759923222
1.4.2.9.9-10,RWPR0100,"RW Collection Pump Rm - Close wall formwork (Part 1 of 2)",7112,"CCGTD1_IPS",TT_Task,"58773",-,-,-,100,TK_Complete,26/11/2018,23/11/2018,26/11/2018,28/11/2018,"RWPR0090 FS","RWPR0090","RWPR0110 FS","RWPR0110",173,210,173,210,40,49,40,49,40,,"CCGT D1_Integrated Programme Schedule;CIVILS;CONSTRUCTION;Power Island - Other External Areas;UG Rainwater Collection Pump Room / Emergency Power Generator",1,1,0.0000611122,0.0063072228,0.0099694812,0,0.6,0.0000812387,0.0068493151,0.0030769231,0.09225,0.0161879896,0.0315315315,0.0,0.6,0.0
1.4.2.9.9-11,RWPR0110,"RW Collection Pump Rm - Pour basement wall and staircase (Part 1 of 2)",7112,"CCGTD1_IPS",TT_Task,"58773",-,-,-,100,TK_Complete,28/01/2019,29/11/2018,28/01/2019,29/11/2018,"RWPR0100 FS","RWPR0100","RWPR0120 FS,RWPR0185 FS,RWPR0170 FS","RWPR0120,RWPR0185,RWPR0170",182,210,182,210,42,49,42,49,46,,"CCGT D1_Integrated Programme Schedule;CIVILS;CONSTRUCTION;Power Island - Other External Areas;UG Rainwater Collection Pump Room / Emergency Power Generator",1,3,0.0000603255,0.006103764,0.01017294,0,1.0,0.0000812387,0.0068493151,0.0092307692,0.0910625,0.0156657963,0.0321750322,0.0,1.0,0.0
1.4.2.9.9-12,RWPR0030,"RW Collection Pump Rm - Install waterproofing [confirmed not required]",7112,"CCGTD1_IPS",TT_Task,"58773",-,-,-,100,TK_Complete,26/11/2018,31/10/2018,27/11/2018,31/10/2018,"RWPR0020 FS","RWPR0020","RWPR0040 FS","RWPR0040",173,206,173,206,40,48,40,48,40,,"CCGT D1_Integrated Programme Schedule;CIVILS;CONSTRUCTION;Power Island - Other External Areas;UG Rainwater Collection Pump Room / Emergency Power Generator",1,1,0.0000034779,0.0085452696,0.0004069176,1,1.0,0.000209244,0.0068493151,0.0030769231,0.00525,0.0219321149,0.0012870013,0.0022421525,1.0,0.0524499399
1.4.2.9.9-13,RWPR0160,"RW Collection Pump Rm - Curing",7112,"CCGTD1_IPS",TT_Task,"58773",-,-,-,100,TK_Complete,26/01/2019,08/01/2019,01/02/2019,14/01/2019,"","","RWPR0210 FF,RWPR0185 FS","RWPR0210,RWPR0185",182,216,183,217,42,50,42,50,45,,"CCGT D1_Integrated Programme Schedule;CIVILS;CONSTRUCTION;Power Island - Other External Areas;UG Rainwater Collection Pump Room / Emergency Power Generator",0,2,0.0,0.0063072228,0.0,6,1.0,0.0000812387,0.0,0.0061538462,0.0,0.0161879896,0.0,0.0134529148,1.0,0.0
1.4.2.9.9-14,RWPR0170,"RW Collection Pump Rm - Apply waterproofing to the external face of basement wall [confirmed not required]",7112,"CCGTD1_IPS",TT_Task,"58773",-,-,-,100,TK_Complete,01/04/2019,29/11/2018,02/04/2019,29/11/2018,"RWPR0110 FS","RWPR0110","RWPR0180 FS","RWPR0180",191,210,191,210,44,49,44,49,52,,"CCGT D1_Integrated Programme Schedule;CIVILS;CONSTRUCTION;Power Island - Other External Areas;UG Rainwater Collection Pump Room / Emergency Power Generator",1,1,0.0000285687,0.0036622584,0.0103763988,1,1.0,0.0000823724,0.0068493151,0.0030769231,0.043125,0.0093994778,0.0328185328,0.0022421525,1.0,0.0004645403
1.4.2.9.9-15,RWPR0180,"RW Collection Pump Rm - Backfill againt basement wall",7112,"CCGTD1_IPS",TT_Task,"58773",-,-,-,100,TK_Complete,04/02/2019,17/12/2018,14/02/2019,22/12/2018,"RWPR0170 FS,EV048010 FS","RWPR0170,EV048010","DPT10140 FS","DPT10140",183,213,185,214,42,49,43,49,46,,"CCGT D1_Integrated Programme Schedule;CIVILS;CONSTRUCTION;Power Island - Other External Areas;UG Rainwater Collection Pump Room / Emergency Power Generator",2,1,0.0000292726,0.0034587996,0.011190234,10,1.0,0.0001835309,0.0136986301,0.0030769231,0.0441875,0.0088772846,0.0353925354,0.0224215247,1.0,0.041914035
1.4.2.9.9-16,RWPR0120,"RW Collection Pump Rm - Erect formwork for basement wall and staircase (Part 2 of 2)",7112,"CCGTD1_IPS",TT_Task,"58773",-,-,-,100,TK_Complete,15/02/2019,16/12/2018,19/02/2019,23/12/2018,"RWPR0110 FS,DPT10140 FS","RWPR0110,DPT10140","RWPR0130 FS","RWPR0130",185,213,185,214,43,49,43,50,47,,"CCGT D1_Integrated Programme Schedule;CIVILS;CONSTRUCTION;Power Island - Other External Areas;UG Rainwater Collection Pump Room / Emergency Power Generator",2,1,0.0000073285,0.0006103764,0.0120040692,4,1.0,0.000163763,0.0136986301,0.0030769231,0.0110625,0.0015665796,0.037966538,0.0089686099,1.0,0.0338141554
1.4.2.9.9-17,RWPR0130,"RW Collection Pump Rm - Fix rebar for basement wall and staircase (Part 2 of 2)",7112,"CCGTD1_IPS",TT_Task,"58773",-,-,-,100,TK_Complete,18/02/2019,21/12/2018,21/02/2019,05/01/2019,"RWPR0120 FS","RWPR0120","RWPR0140 FS","RWPR0140",185,214,186,216,43,49,43,50,47,,"CCGT D1_Integrated Programme Schedule;CIVILS;CONSTRUCTION;Power Island - Other External Areas;UG Rainwater Collection Pump Room / Emergency Power Generator",1,1,0.0000049685,0.0004069176,0.012207528,3,0.0,0.000220704,0.0068493151,0.0030769231,0.0075,0.0010443864,0.0386100386,0.0067264574,0.0,0.0571456492
1.4.2.9.9-18,RWPR0140,"RW Collection Pump Rm - Close wall formwork (Part 2 of 2)",7112,"CCGTD1_IPS",TT_Task,"58773",-,-,-,100,TK_Complete,21/02/2019,04/01/2019,22/02/2019,06/01/2019,"RWPR0130 FS","RWPR0130","RWPR0150 FS","RWPR0150",186,216,186,216,43,50,43,50,47,,"CCGT D1_Integrated Programme Schedule;CIVILS;CONSTRUCTION;Power Island - Other External Areas;UG Rainwater Collection Pump Room / Emergency Power Generator",1,1,0.0000025256,0.0002034588,0.0124109868,1,0.8,0.0002691802,0.0068493151,0.0030769231,0.0038125,0.0005221932,0.0392535393,0.0022421525,0.8,0.0770086604
1.4.2.9.9-19,RWPR0150,"RW Collection Pump Rm - Pour basement wall and staircase (Part 2 of 2)",7112,"CCGTD1_IPS",TT_Task,"58773",-,-,-,100,TK_Complete,23/02/2019,07/01/2019,23/02/2019,07/01/2019,"RWPR0140 FS","RWPR0140","","",186,216,186,216,43,50,43,50,48,,"CCGT D1_Integrated Programme Schedule;CIVILS;CONSTRUCTION;Power Island - Other External Areas;UG Rainwater Collection Pump Room / Emergency Power Generator",1,0,0.0,0.0,0.0126144456,0,1.0,0.0000812387,0.0068493151,0.0,0.0,0.0,0.0398970399,0.0,1.0,0.0
1.4.2.9.9-20,RWPR0190,"RW Collection Pump Rm - Falsework and formwork to top slab",7112,"CCGTD1_IPS",TT_Task,"58773",-,-,-,100,TK_Complete,16/03/2019,16/12/2018,18/03/2019,23/12/2018,"","","RWPR0200 FS","RWPR0200",189,213,189,214,44,49,44,50,48,,"CCGT D1_Integrated Programme Schedule;CIVILS;CONSTRUCTION;Power Island - Other External Areas;UG Rainwater Collection Pump Room / Emergency Power Generator",0,1,0.0,0.002034588,0.0,2,0.8,0.0000812387,0.0,0.0030769231,0.0,0.0052219321,0.0,0.0044843049,0.8,0.0
1.4.2.9.9-21,RWPR0200,"RW Collection Pump Rm - Fix rebar",7112,"CCGTD1_IPS",TT_Task,"58773",-,-,-,100,TK_Complete,19/03/2019,21/12/2018,21/03/2019,05/01/2019,"RWPR0190 FS","RWPR0190","RWPR0210 FS","RWPR0210",189,214,190,216,44,49,44,50,48,,"CCGT D1_Integrated Programme Schedule;CIVILS;CONSTRUCTION;Power Island - Other External Areas;UG Rainwater Collection Pump Room / Emergency Power Generator",1,1,0.0000003726,0.0018311292,0.0002034588,2,0.0,0.0001503957,0.0068493151,0.0030769231,0.0005625,0.0046997389,0.0006435006,0.0044843049,0.0,0.0283369572
1.4.2.9.9-22,RWPR0210,"RW Collection Pump Rm - Pour top slab",7112,"CCGTD1_IPS",TT_Task,"58773",-,-,-,100,TK_Complete,22/03/2019,07/01/2019,22/03/2019,07/01/2019,"RWPR0200 FS,RWPR0160 FF","RWPR0200,RWPR0160","RWPR0220 FS,RWPR0240 FS,3.7 FS","RWPR0220,RWPR0240,3.7",190,216,190,216,44,50,44,50,49,,"CCGT D1_Integrated Programme Schedule;CIVILS;CONSTRUCTION;Power Island - Other External Areas;UG Rainwater Collection Pump Room / Emergency Power Generator",2,3,0.000000973,0.0016276704,0.0006103764,0,1.0,0.0000812387,0.0136986301,0.0092307692,0.00146875,0.0041775457,0.0019305019,0.0,1.0,0.0
1.4.2.9.9-23,RWPR0220,"RW Collection Pump Rm - Construct remaining staircase structure abovehground",7112,"CCGTD1_IPS",TT_Task,"58773",-,-,-,100,TK_Complete,16/09/2019,19/08/2019,14/10/2019,24/09/2019,"RWPR0210 FS,RWPR0185 FS","RWPR0210,RWPR0185","RWPR0240 FS","RWPR0240",215,248,219,253,50,57,51,59,77,,"CCGT D1_Integrated Programme Schedule;CIVILS;CONSTRUCTION;Power Island - Other External Areas;UG Rainwater Collection Pump Room / Emergency Power Generator",2,1,0.0000121313,0.0012207528,0.0113936928,28,0.4,0.0002573133,0.0136986301,0.0030769231,0.0183125,0.0031331593,0.036036036,0.0627802691,0.4,0.0721462261
1.4.2.9.9-24,RWPR0230,"RW Collection Pump Rm - Construct footing for Emergency Power Generator on top slab (relocated to adj. Shaft F)",7112,"CCGTD1_IPS",TT_Task,"58773",-,-,-,100,TK_Complete,01/04/2019,18/03/2019,18/04/2019,02/07/2019,"SFF10012 FS","SFF10012","2.4 FS","2.4",191,226,194,241,44,52,45,56,52,,"CCGT D1_Integrated Programme Schedule;CIVILS;CONSTRUCTION;Power Island - Other External Areas;UG Rainwater Collection Pump Room / Emergency Power Generator",1,1,0.0000006211,0.0002034588,0.003051882,17,0.0,0.0001957698,0.0068493151,0.0030769231,0.0009375,0.0005221932,0.0096525097,0.0381165919,0.0,0.0469288936
1.4.2.9.9-25,RWPR0185,"RW Collection Pump Rm - Construct Irrigation Tank and Rainwater Collection Tank structure",7112,"CCGTD1_IPS",TT_Task,"58773",-,-,-,100,TK_Complete,01/04/2019,09/03/2019,27/05/2019,17/08/2019,"RWPR0110 FS,RWPR0160 FS","RWPR0110,RWPR0160","EV048010 SS,RWPR0220 FS","EV048010,RWPR0220",191,225,199,248,44,52,46,57,52,,"CCGT D1_Integrated Programme Schedule;CIVILS;CONSTRUCTION;Power Island - Other External Areas;UG Rainwater Collection Pump Room / Emergency Power Generator",2,2,0.0000212195,0.0056968464,0.0105798576,56,0.0,0.0002138841,0.0136986301,0.0061538462,0.03203125,0.0146214099,0.0334620335,0.1255605381,0.0,0.054351213
1.4.2.9.9-26,RWPR0240,"RW Collection Pump Rm - ABWF works to pump room and water tanks",7112,"CCGTD1_IPS",TT_Task,"58773",-,-,-,100,TK_Complete,02/01/2020,25/09/2019,17/02/2020,31/12/2019,"RWPR0210 FS,RWPR0220 FS","RWPR0210,RWPR0220","RWPR0250 FF","RWPR0250",231,253,237,267,53,59,55,62,87,,"CCGT D1_Integrated Programme Schedule;CIVILS;CONSTRUCTION;Power Island - Other External Areas;UG Rainwater Collection Pump Room / Emergency Power Generator",2,1,0.0000110134,0.001017294,0.0115971516,46,0.0,0.0003433058,0.0136986301,0.0030769231,0.016625,0.0026109661,0.0366795367,0.1031390135,0.0,0.1073814821
1.4.2.9.9-27,RWPR0250,"RW Collection Pump Rm - Building Services installation",7112,"CCGTD1_IPS",TT_Task,"58773",-,-,-,100,TK_Complete,02/01/2020,22/08/2019,17/02/2020,24/01/2020,"RWPR0240 FF","RWPR0240","IRRI0010 FF","IRRI0010",231,248,237,271,53,58,55,63,87,,"CCGT D1_Integrated Programme Schedule;CIVILS;CONSTRUCTION;Power Island - Other External Areas;UG Rainwater Collection Pump Room / Emergency Power Generator",1,1,0.000008819,0.0008138352,0.0118006104,46,0.0,0.0003736035,0.0068493151,0.0030769231,0.0133125,0.0020887728,0.0373230373,0.1031390135,0.0,0.1197959102
1.4.2.9.9.1,58774,"Irrigation System Installation",7112,"CCGTD1_IPS",WBS,"58773",,,,100,Complete,09/08/2019,29/04/2019,12/03/2020,24/01/2020,,,,,210,232,241,271,49,54,56,63,,,"CCGT D1_Integrated Programme Schedule;CIVILS;CONSTRUCTION;Power Island - Other External Areas;UG Rainwater Collection Pump Room / Emergency Power Generator"
1.4.2.9.9.1-1,IRRI0010,"Irrigation System - Plant room installation inside RW Collection Pump Rm",7112,"CCGTD1_IPS",TT_Task,"58774",-,-,-,100,TK_Complete,04/02/2020,20/10/2019,12/03/2020,24/01/2020,"RWPR0250 FF,GENSUB21 FF","RWPR0250,GENSUB21","IRRI0040 FF","IRRI0040",235,257,241,271,55,60,56,63,89,,"CCGT D1_Integrated Programme Schedule;CIVILS;CONSTRUCTION;Power Island - Other External Areas;UG Rainwater Collection Pump Room / Emergency Power Generator;Irrigation System Installation",2,1,0.0000073699,0.0006103764,0.0130213632,37,0.0,0.000646502,0.0136986301,0.0030769231,0.011125,0.0015665796,0.0411840412,0.0829596413,0.0,0.2316155642
1.4.2.9.9.1-2,IRRI0030,"Irrigation System - Distribution pipeline installation along the perimeter of Turbine Hall",7112,"CCGTD1_IPS",TT_Task,"58774",-,-,-,100,TK_Complete,19/02/2020,22/07/2019,03/03/2020,18/12/2019,"","","SW1.1 FF","SW1.1",238,244,239,265,55,57,55,62,89,,"CCGT D1_Integrated Programme Schedule;CIVILS;CONSTRUCTION;Power Island - Other External Areas;UG Rainwater Collection Pump Room / Emergency Power Generator;Irrigation System Installation",0,1,0.0,0.0002034588,0.0,13,0.0,0.0000812387,0.0,0.0030769231,0.0,0.0005221932,0.0,0.0291479821,0.0,0.0
1.4.2.9.9.1-3,IRRI0020,"Irrigation System - Distribution pipeline installation along the east perimeter of HRSG Area",7112,"CCGTD1_IPS",TT_Task,"58774",-,-,-,100,TK_Complete,02/01/2020,19/12/2019,15/01/2020,17/01/2020,"HRSG0080 FS,EV015010 SS","HRSG0080,EV015010","SW1.1 FF","SW1.1",231,265,233,270,53,62,54,63,87,,"CCGT D1_Integrated Programme Schedule;CIVILS;CONSTRUCTION;Power Island - Other External Areas;UG Rainwater Collection Pump Room / Emergency Power Generator;Irrigation System Installation",2,1,0.0000003105,0.0002034588,0.0016276704,13,0.0,0.00012433,0.0136986301,0.0030769231,0.00046875,0.0005221932,0.0051480051,0.0291479821,0.0,0.017656579
1.4.2.9.9.1-4,IRRI0040,"Irrigation System - Distribution pipeline installation to the northern side of HRSG Area",7112,"CCGTD1_IPS",TT_Task,"58774",-,-,-,100,TK_Complete,15/01/2020,15/01/2020,24/01/2020,24/01/2020,"IRRI0010 FF","IRRI0010","LAND0010 FS","LAND0010",233,269,234,271,54,62,54,63,88,,"CCGT D1_Integrated Programme Schedule;CIVILS;CONSTRUCTION;Power Island - Other External Areas;UG Rainwater Collection Pump Room / Emergency Power Generator;Irrigation System Installation",1,1,0.0000048029,0.0004069176,0.013224822,9,1.0,0.000631912,0.0068493151,0.0030769231,0.00725,0.0010443864,0.0418275418,0.0201793722,1.0,0.2256373489
1.4.2.9.9.1-5,IRRI0015,"Irrigation System - Water supply pipeline from the water cabinet",7112,"CCGTD1_IPS",TT_Task,"58774",-,-,-,100,TK_Complete,09/08/2019,29/04/2019,05/09/2019,30/09/2019,"","","SW1.1 FF","SW1.1",210,232,214,254,49,54,49,59,69,,"CCGT D1_Integrated Programme Schedule;CIVILS;CONSTRUCTION;Power Island - Other External Areas;UG Rainwater Collection Pump Room / Emergency Power Generator;Irrigation System Installation",0,1,0.0,0.0002034588,0.0,27,0.0,0.0000812387,0.0,0.0030769231,0.0,0.0005221932,0.0,0.0605381166,0.0,0.0
1.4.2.9.10,58772,"LV Auxiliary Power Transformer",7112,"CCGTD1_IPS",WBS,"58765",,,,100,Complete,01/04/2019,29/01/2019,09/04/2019,04/02/2019,,,,,191,219,192,220,44,51,45,51,,,"CCGT D1_Integrated Programme Schedule;CIVILS;CONSTRUCTION;Power Island - Other External Areas"
1.4.2.9.10-1,APTX0010,"LV Aux. Power TX - Construct 600mm deep foundation",7112,"CCGTD1_IPS",TT_Task,"58772",-,-,-,100,TK_Complete,01/04/2019,29/01/2019,09/04/2019,04/02/2019,"CLPSUP15 FS,SBOE2BA8 FS,SBOE3BA8 FF,DBSG0020 SS","CLPSUP15,SBOE2BA8,SBOE3BA8,DBSG0020","3.1 FS","3.1",191,219,192,220,44,51,45,51,52,,"CCGT D1_Integrated Programme Schedule;CIVILS;CONSTRUCTION;Power Island - Other External Areas;LV Auxiliary Power Transformer",4,1,0.0000003726,0.0002034588,0.0024415056,8,1.0,0.0002712222,0.0273972603,0.0030769231,0.0005625,0.0005221932,0.0077220077,0.0179372197,1.0,0.0778453867
1.4.2.9.11,58771,"Outdoor Dirty and Clean Oil Tank",7112,"CCGTD1_IPS",WBS,"58765",,,,,NotStart,,,,,,,,,,,,,,,,,,,"CCGT D1_Integrated Programme Schedule;CIVILS;CONSTRUCTION;Power Island - Other External Areas"
1.4.2.9.12,58770,"Feedwater Platform",7112,"CCGTD1_IPS",WBS,"58765",,,,100,Complete,28/02/2018,09/02/2018,15/12/2018,31/12/2018,,,,,135,169,176,215,31,39,41,50,,,"CCGT D1_Integrated Programme Schedule;CIVILS;CONSTRUCTION;Power Island - Other External Areas"
1.4.2.9.12-1,EV035010,"Event 035 - CLP allocated space for relocation of rebar yard",7112,"CCGTD1_IPS",TT_Task,"58770",-,-,-,100,TK_Complete,26/07/2018,16/07/2018,26/07/2018,25/07/2018,"","","FWPT0020 FS","FWPT0020",156,191,156,192,36,44,36,44,33,,"CCGT D1_Integrated Programme Schedule;CIVILS;CONSTRUCTION;Power Island - Other External Areas;Feedwater Platform",0,1,0.0,0.0004069176,0.0,0,0.4,0.0000812387,0.0,0.0030769231,0.0,0.0010443864,0.0,0.0,0.4,0.0
1.4.2.9.12-2,EV019010,"Event 019 - Plate Load Test Set Up",7112,"CCGTD1_IPS",TT_Task,"58770",-,-,-,100,TK_Complete,28/02/2018,09/02/2018,06/03/2018,13/02/2018,"","","BBDP0070 FS,EV019020 FS","BBDP0070,EV019020",135,169,135,169,31,39,31,39,19,,"CCGT D1_Integrated Programme Schedule;CIVILS;CONSTRUCTION;Power Island - Other External Areas;Feedwater Platform",0,1,0.0,0.004069176,0.0,6,1.0,0.0000812387,0.0,0.0030769231,0.0,0.0104438642,0.0,0.0134529148,1.0,0.0
1.4.2.9.12-3,EV015010,"Event 015 - HRSG West occupied by M&E Contract for HRSG Erection",7112,"CCGTD1_IPS",TT_Task,"58770",-,-,-,100,TK_Complete,23/04/2018,07/03/2018,03/06/2018,25/05/2018,"EV019020 FS","EV019020","IRRI0020 SS,DEF_WK10 SS,BBDP0010 FS,EV015020 FS","IRRI0020,DEF_WK10,BBDP0010,EV015020",142,172,148,184,33,40,34,42,25,,"CCGT D1_Integrated Programme Schedule;CIVILS;CONSTRUCTION;Power Island - Other External Areas;Feedwater Platform",0,4,0.0,0.0054933876,0.0,41,0.0,0.0000812387,0.0,0.0123076923,0.0,0.0140992167,0.0,0.0919282511,0.0,0.0
1.4.2.9.12-4,EV019030,"Event 019 - Plate Load Test ( x2 nos)",7112,"CCGTD1_IPS",TT_Task,"58770",-,-,-,100,TK_Complete,01/08/2018,21/06/2018,14/08/2018,25/06/2018,"EV015030 FS","EV015030","EV019040 FS","EV019040",157,187,158,188,36,43,37,43,34,,"CCGT D1_Integrated Programme Schedule;CIVILS;CONSTRUCTION;Power Island - Other External Areas;Feedwater Platform",1,1,0.0000021116,0.0042726348,0.0006103764,13,1.0,0.0001503957,0.0068493151,0.0030769231,0.0031875,0.0109660574,0.0019305019,0.0291479821,1.0,0.0283369572
1.4.2.9.12-5,EV015020,"Event 015 - Remob, excavation, earthing, backfill to formation levels, set-up for plate load test",7112,"CCGTD1_IPS",TT_Task,"58770",-,-,-,100,TK_Complete,26/06/2018,26/05/2018,10/07/2018,09/06/2018,"EV015010 FS","EV015010","EV015030 FS","EV015030",151,184,153,186,35,42,35,43,31,,"CCGT D1_Integrated Programme Schedule;CIVILS;CONSTRUCTION;Power Island - Other External Areas;Feedwater Platform",1,1,0.0000004554,0.0046795524,0.0002034588,14,1.0,0.0001097151,0.0068493151,0.0030769231,0.0006875,0.0120104439,0.0006435006,0.0313901345,1.0,0.0116681588
1.4.2.9.12-6,EV015030,"Event 015 - Clarification on plate load test requirements and invitation for BD inspection",7112,"CCGTD1_IPS",TT_Task,"58770",-,-,-,100,TK_Complete,26/06/2018,10/06/2018,26/06/2018,20/06/2018,"EV015020 FS","EV015020","EV019030 FS","EV019030",151,186,151,187,35,43,35,43,31,,"CCGT D1_Integrated Programme Schedule;CIVILS;CONSTRUCTION;Power Island - Other External Areas;Feedwater Platform",1,1,0.0000013249,0.0044760936,0.0004069176,0,0.0,0.0000812387,0.0068493151,0.0030769231,0.002,0.0114882507,0.0012870013,0.0,0.0,0.0
1.4.2.9.12-7,EV019040,"Event 019 - Photo records for foundation dimension set-out",7112,"CCGTD1_IPS",TT_Task,"58770",-,-,-,100,TK_Complete,26/07/2018,26/06/2018,29/07/2018,29/06/2018,"EV019030 FS","EV019030","FWPT0010 FS,BBDP0070 FS","FWPT0010,BBDP0070",156,188,156,189,36,44,36,44,33,,"CCGT D1_Integrated Programme Schedule;CIVILS;CONSTRUCTION;Power Island - Other External Areas;Feedwater Platform",1,2,0.0000028155,0.004069176,0.0008138352,3,1.0,0.000209244,0.0068493151,0.0061538462,0.00425,0.0104438642,0.0025740026,0.0067264574,1.0,0.0524499399
1.4.2.9.12-8,EV040001,"Event 040 - Balance of Feedwater Platform area handed back by KSS",7112,"CCGTD1_IPS",TT_Mile,"58770",-,-,-,100,TK_Complete,26/11/2018,04/09/2018,26/11/2018,04/09/2018,"","","FWPT0020 FS","FWPT0020",173,198,173,198,40,46,40,46,40,,"CCGT D1_Integrated Programme Schedule;CIVILS;CONSTRUCTION;Power Island - Other External Areas;Feedwater Platform",0,1,0.0,0.0004069176,0.0,0,1.0,0.0000812387,0.0,0.0030769231,0.0,0.0010443864,0.0,0.0,1.0,0.0
1.4.2.9.12-9,FWPT0010,"FW Platform - Construct base slab GL.K-S (= Pipe Bridge)",7112,"CCGTD1_IPS",TT_Task,"58770",-,-,-,100,TK_Complete,26/07/2018,30/06/2018,27/09/2018,23/08/2018,"SBOE2BA8 FS,SBOE3BA8 FF,EV019040 FS,BBDP0110 FF","SBOE2BA8,SBOE3BA8,EV019040,BBDP0110","FWPT0030 FS,GFFE0010 FS,FWPT0020 FF","FWPT0030,GFFE0010,FWPT0020",156,189,165,196,36,44,38,45,33,,"CCGT D1_Integrated Programme Schedule;CIVILS;CONSTRUCTION;Power Island - Other External Areas;Feedwater Platform",4,3,0.0000061278,0.0016276704,0.00508647,63,1.0,0.000383594,0.0273972603,0.0092307692,0.00925,0.0041775457,0.0160875161,0.1412556054,1.0,0.1238895057
1.4.2.9.12-10,FWPT0020,"FW Platform - Construct base slab GL.S-V (= Feedwater Platform)",7112,"CCGTD1_IPS",TT_Task,"58770",-,-,-,100,TK_Complete,31/08/2018,30/07/2018,11/10/2018,08/10/2018,"HRSG0080 FS,SBOE3BA8 FF,FWPT0010 FF,EV035010 FS,EV040001 FS","HRSG0080,SBOE3BA8,FWPT0010,EV035010,EV040001","FWPT0030 FF,FWPT0005 FF","FWPT0030,FWPT0005",161,193,167,203,37,45,39,47,36,,"CCGT D1_Integrated Programme Schedule;CIVILS;CONSTRUCTION;Power Island - Other External Areas;Feedwater Platform",5,1,0.000000414,0.0002034588,0.007121058,41,0.0,0.0004565947,0.0342465753,0.0030769231,0.000625,0.0005221932,0.0225225225,0.0919282511,0.0,0.1538014038
1.4.2.9.12-11,FWPT0030,"FW Platform - Construct plinths for FW Pump, Con.Recirculation Pump, Sampling Skid, Amonnia & Phosphate Dosing Container",7112,"CCGTD1_IPS",TT_Task,"58770",-,-,-,100,TK_Complete,27/08/2018,24/08/2018,13/09/2018,27/10/2018,"FWPT0020 FF,FWPT0010 FS","FWPT0020,FWPT0010","","",160,197,163,206,37,45,38,48,35,,"CCGT D1_Integrated Programme Schedule;CIVILS;CONSTRUCTION;Power Island - Other External Areas;Feedwater Platform",2,0,0.0,0.0,0.0073245168,17,0.0,0.0005368898,0.0136986301,0.0,0.0,0.0,0.0231660232,0.0381165919,0.0,0.1867021822
1.4.2.9.12-12,FWPT0040,"FW Platform - Construct of remaining Feedwater Platform foundation and plinth",7112,"CCGTD1_IPS",TT_Task,"58770",-,-,-,100,TK_Complete,26/11/2018,15/11/2018,15/12/2018,31/12/2018,"","","FWPT0005 FF,2.1 FS,2.2 FS,2.3 FS","FWPT0005,2.1,2.2,2.3",173,208,176,215,40,48,41,50,40,,"CCGT D1_Integrated Programme Schedule;CIVILS;CONSTRUCTION;Power Island - Other External Areas;Feedwater Platform",0,3,0.0,0.0006103764,0.0,19,0.0,0.0000812387,0.0,0.0092307692,0.0,0.0015665796,0.0,0.0426008969,0.0,0.0
1.4.2.9.13,58769,"Boiler Blow Down Pit",7112,"CCGTD1_IPS",WBS,"58765",,,,100,Complete,26/06/2018,28/05/2018,11/09/2018,17/08/2018,,,,,151,184,162,196,35,43,38,45,,,"CCGT D1_Integrated Programme Schedule;CIVILS;CONSTRUCTION;Power Island - Other External Areas"
1.4.2.9.13-1,BBDP0010,"Boiler Blow Down Pit - Further excavate from +4.2 to the final formation level",7112,"CCGTD1_IPS",TT_Task,"58769",-,-,-,100,TK_Complete,26/06/2018,28/05/2018,28/06/2018,02/06/2018,"EV015010 FS","EV015010","BBDP0070 FS","BBDP0070",151,184,152,185,35,43,35,43,31,,"CCGT D1_Integrated Programme Schedule;CIVILS;CONSTRUCTION;Power Island - Other External Areas;Boiler Blow Down Pit",1,1,0.0000004554,0.004069176,0.0002034588,2,0.6,0.0000853068,0.0068493151,0.0030769231,0.0006875,0.0104438642,0.0006435006,0.0044843049,0.6,0.0016668798
1.4.2.9.13-2,BBDP0070,"Boiler Blow Down Pit - Cast vertical blinding to the profile of base slab and shallow ppit",7112,"CCGTD1_IPS",TT_Task,"58769",-,-,-,100,TK_Complete,02/08/2018,04/07/2018,06/08/2018,14/07/2018,"BBDP0010 FS,EV019010 FS,EV019040 FS,BBDP0200 FS","BBDP0010,EV019010,EV019040,BBDP0200","BBDP0075 FS","BBDP0075",157,189,157,191,36,44,36,44,34,,"CCGT D1_Integrated Programme Schedule;CIVILS;CONSTRUCTION;Power Island - Other External Areas;Boiler Blow Down Pit",4,1,0.0000044302,0.0038657172,0.0016276704,4,0.8,0.0003028067,0.0273972603,0.0030769231,0.0066875,0.009921671,0.0051480051,0.0089686099,0.8,0.0907870414
1.4.2.9.13-3,BBDP0080,"Boiler Blow Down Pit - Fix bottom layer rebar",7112,"CCGTD1_IPS",TT_Task,"58769",-,-,-,100,TK_Complete,28/07/2018,16/07/2018,07/08/2018,21/07/2018,"BBDP0075 FS,SBOE2BA8 FS,SBOE3BA8 FF","BBDP0075,SBOE2BA8,SBOE3BA8","BBDP0090 FS,FWPT0005 FS,BBDP0150 FS","BBDP0090,FWPT0005,BBDP0150",156,191,157,192,36,44,36,44,33,,"CCGT D1_Integrated Programme Schedule;CIVILS;CONSTRUCTION;Power Island - Other External Areas;Boiler Blow Down Pit",3,2,0.0000070801,0.0032553408,0.0036622584,10,1.0,0.0003322046,0.0205479452,0.0061538462,0.0106875,0.0083550914,0.0115830116,0.0224215247,1.0,0.1028328114
1.4.2.9.13-4,BBDP0090,"Boiler Blow Down Pit - Close formwork (if any)",7112,"CCGTD1_IPS",TT_Task,"58769",-,-,-,100,TK_Complete,03/09/2018,09/08/2018,03/09/2018,09/08/2018,"BBDP0080 FS","BBDP0080","BBDP0100 FS","BBDP0100",161,194,161,194,37,45,37,45,36,,"CCGT D1_Integrated Programme Schedule;CIVILS;CONSTRUCTION;Power Island - Other External Areas;Boiler Blow Down Pit",1,1,0.0000038092,0.0022380468,0.0038657172,0,1.0,0.0000812387,0.0068493151,0.0030769231,0.00575,0.0057441253,0.0122265122,0.0,1.0,0.0
1.4.2.9.13-5,BBDP0100,"Boiler Blow Down Pit - Pour base slab and shallow pit",7112,"CCGTD1_IPS",TT_Task,"58769",-,-,-,100,TK_Complete,04/09/2018,10/08/2018,04/09/2018,10/08/2018,"BBDP0090 FS,BBDP0160 FS","BBDP0090,BBDP0160","BBDP0110 FS","BBDP0110",161,195,161,195,37,45,37,45,36,,"CCGT D1_Integrated Programme Schedule;CIVILS;CONSTRUCTION;Power Island - Other External Areas;Boiler Blow Down Pit",2,1,0.0000046786,0.002034588,0.0046795524,0,1.0,0.0000812387,0.0136986301,0.0030769231,0.0070625,0.0052219321,0.0148005148,0.0,1.0,0.0
1.4.2.9.13-6,BBDP0110,"Boiler Blow Down Pit - Prepare CJ",7112,"CCGTD1_IPS",TT_Task,"58769",-,-,-,100,TK_Complete,06/09/2018,11/08/2018,06/09/2018,11/08/2018,"BBDP0100 FS","BBDP0100","FWPT0010 FF","FWPT0010",162,195,162,195,37,45,37,45,36,,"CCGT D1_Integrated Programme Schedule;CIVILS;CONSTRUCTION;Power Island - Other External Areas;Boiler Blow Down Pit",1,1,0.000004099,0.0018311292,0.0048830112,0,1.0,0.0000812387,0.0068493151,0.0030769231,0.0061875,0.0046997389,0.0154440154,0.0,1.0,0.0
1.4.2.9.13-7,BBDP0140,"Boiler Blow Down Pit - Erect wall and column formwork",7112,"CCGTD1_IPS",TT_Task,"58769",-,-,-,100,TK_Complete,27/08/2018,26/07/2018,30/08/2018,28/07/2018,"","","BBDP0150 FS","BBDP0150",160,192,161,193,37,45,37,45,35,,"CCGT D1_Integrated Programme Schedule;CIVILS;CONSTRUCTION;Power Island - Other External Areas;Boiler Blow Down Pit",0,1,0.0,0.003051882,0.0,3,1.0,0.0000812387,0.0,0.0030769231,0.0,0.0078328982,0.0,0.0067264574,1.0,0.0
1.4.2.9.13-8,BBDP0150,"Boiler Blow Down Pit - Fix upper layer rebar",7112,"CCGTD1_IPS",TT_Task,"58769",-,-,-,100,TK_Complete,30/08/2018,04/08/2018,01/09/2018,07/08/2018,"BBDP0140 FS,BBDP0080 FS","BBDP0140,BBDP0080","BBDP0160 FF,FWPT0005 SF","BBDP0160,FWPT0005",161,194,161,194,37,45,37,45,36,,"CCGT D1_Integrated Programme Schedule;CIVILS;CONSTRUCTION;Power Island - Other External Areas;Boiler Blow Down Pit",2,1,0.0000029397,0.0028484232,0.004069176,2,0.8,0.0004333903,0.0136986301,0.0030769231,0.0044375,0.007310705,0.0128700129,0.0044843049,0.8,0.1442934612
1.4.2.9.13-9,BBDP0160,"Boiler Blow Down Pit - Close wall formwork",7112,"CCGTD1_IPS",TT_Task,"58769",-,-,-,100,TK_Complete,31/08/2018,06/08/2018,03/09/2018,09/08/2018,"BBDP0150 FF","BBDP0150","BBDP0170 FS,BBDP0100 FS","BBDP0170,BBDP0100",161,194,161,194,37,45,37,45,36,,"CCGT D1_Integrated Programme Schedule;CIVILS;CONSTRUCTION;Power Island - Other External Areas;Boiler Blow Down Pit",1,2,0.0000026499,0.0026449644,0.0042726348,3,1.0,0.0004504335,0.0068493151,0.0061538462,0.004,0.0067885117,0.0135135135,0.0067264574,1.0,0.151276842
1.4.2.9.13-10,BBDP0170,"Boiler Blow Down Pit- Pour walls and columns to the underside of Feedwater Platform slab",7112,"CCGTD1_IPS",TT_Task,"58769",-,-,-,100,TK_Complete,04/09/2018,10/08/2018,04/09/2018,10/08/2018,"BBDP0160 FS","BBDP0160","BBDP0180 FS","BBDP0180",161,195,161,195,37,45,37,45,36,,"CCGT D1_Integrated Programme Schedule;CIVILS;CONSTRUCTION;Power Island - Other External Areas;Boiler Blow Down Pit",1,1,0.0000009109,0.0002034588,0.0044760936,0,1.0,0.0000812387,0.0068493151,0.0030769231,0.001375,0.0005221932,0.0141570142,0.0,1.0,0.0
1.4.2.9.13-11,BBDP0075,"Boiler Blow Down Pit - Install waterproofing",7112,"CCGTD1_IPS",TT_Task,"58769",-,-,-,100,TK_Complete,26/07/2018,12/07/2018,27/07/2018,14/07/2018,"BBDP0070 FS","BBDP0070","BBDP0080 FS,BBDP0190 FF","BBDP0080,BBDP0190",156,190,156,191,36,44,36,44,33,,"CCGT D1_Integrated Programme Schedule;CIVILS;CONSTRUCTION;Power Island - Other External Areas;Boiler Blow Down Pit",1,2,0.0000048443,0.0036622584,0.0018311292,1,0.8,0.0003389482,0.0068493151,0.0061538462,0.0073125,0.0093994778,0.0057915058,0.0022421525,0.8,0.1055959866
1.4.2.9.13-12,BBDP0180,"Boiler Blow Down Pit - Curing",7112,"CCGTD1_IPS",TT_Task,"58769",-,-,-,100,TK_Complete,05/09/2018,11/08/2018,11/09/2018,17/08/2018,"BBDP0170 FS","BBDP0170","","",162,195,162,196,37,45,38,45,36,,"CCGT D1_Integrated Programme Schedule;CIVILS;CONSTRUCTION;Power Island - Other External Areas;Boiler Blow Down Pit",1,0,0.0,0.0,0.0046795524,6,1.0,0.0001503957,0.0068493151,0.0,0.0,0.0,0.0148005148,0.0134529148,1.0,0.0283369572
1.4.2.9.13-13,BBDP0190,"Boiler Blow Down Pit - Apply waterproofing to the external face of pit wall",7112,"CCGTD1_IPS",TT_Task,"58769",-,-,-,100,TK_Complete,21/08/2018,12/07/2018,23/08/2018,14/07/2018,"BBDP0075 FF","BBDP0075","","",159,190,160,191,37,44,37,44,35,,"CCGT D1_Integrated Programme Schedule;CIVILS;CONSTRUCTION;Power Island - Other External Areas;Boiler Blow Down Pit",1,0,0.0,0.0,0.002034588,2,1.0,0.0001293464,0.0068493151,0.0,0.0,0.0,0.0064350064,0.0044843049,1.0,0.0197120276
1.4.2.9.13-14,BBDP0200,"Boiler Blow Down Pit - Backfill againt basement wall",7112,"CCGTD1_IPS",TT_Task,"58769",-,-,-,100,TK_Complete,26/07/2018,30/06/2018,27/07/2018,03/07/2018,"","","BBDP0070 FS","BBDP0070",156,189,156,189,36,44,36,44,33,,"CCGT D1_Integrated Programme Schedule;CIVILS;CONSTRUCTION;Power Island - Other External Areas;Boiler Blow Down Pit",0,1,0.0,0.004069176,0.0,1,0.4,0.0000812387,0.0,0.0030769231,0.0,0.0104438642,0.0,0.0022421525,0.4,0.0
1.4.2.9.14,58768,"Duct Bank between Switchgear Block and Generator Transformer",7112,"CCGTD1_IPS",WBS,"58765",,,,100,Complete,08/03/2019,12/10/2018,28/03/2019,12/02/2019,,,,,188,204,191,221,43,47,44,51,,,"CCGT D1_Integrated Programme Schedule;CIVILS;CONSTRUCTION;Power Island - Other External Areas"
1.4.2.9.14-1,DBSG0010,"Duct Bank between Switchgear Blk & Gen.TX - Construct drawpit BS01, BS03, BS04, BS05",7112,"CCGTD1_IPS",TT_Task,"58768",-,-,-,100,TK_Complete,08/03/2019,12/10/2018,14/03/2019,25/01/2019,"DEF_WK09 FF","DEF_WK09","DBSG0020 SS","DBSG0020",188,204,189,219,43,47,44,51,48,,"CCGT D1_Integrated Programme Schedule;CIVILS;CONSTRUCTION;Power Island - Other External Areas;Duct Bank between Switchgear Block and Generator Transformer",1,1,0.0000001242,0.0006103764,0.0002034588,6,0.0,0.0001503957,0.0068493151,0.0030769231,0.0001875,0.0015665796,0.0006435006,0.0134529148,0.0,0.0283369572
1.4.2.9.14-2,DBSG0020,"Duct Bank between Switchgear Blk & Gen.TX - Install cable ducting with concrete surround",7112,"CCGTD1_IPS",TT_Task,"58768",-,-,-,100,TK_Complete,15/03/2019,06/11/2018,28/03/2019,12/02/2019,"DBSG0010 SS","DBSG0010","APTX0010 SS,3.1 FS","APTX0010,3.1",189,207,191,221,44,48,44,51,48,,"CCGT D1_Integrated Programme Schedule;CIVILS;CONSTRUCTION;Power Island - Other External Areas;Duct Bank between Switchgear Block and Generator Transformer",1,2,0.0000001656,0.0004069176,0.0004069176,13,0.0,0.000209244,0.0068493151,0.0061538462,0.00025,0.0010443864,0.0012870013,0.0291479821,0.0,0.0524499399
1.4.2.9.15,58767,"Generator Transformer",7112,"CCGTD1_IPS",WBS,"58765",,,,100,Complete,26/11/2018,15/10/2018,10/03/2020,20/12/2019,,,,,173,204,240,266,40,47,56,62,,,"CCGT D1_Integrated Programme Schedule;CIVILS;CONSTRUCTION;Power Island - Other External Areas"
1.4.2.9.15-1,GNTX0010,"Generator TX - Further excavate from +4.2 to the required formation level",7112,"CCGTD1_IPS",TT_Task,"58767",-,-,-,100,TK_Complete,04/02/2019,07/01/2019,12/02/2019,07/01/2019,"DPT10140 FS,EV039120 FF","DPT10140,EV039120","GNTX0020 FF","GNTX0020",183,216,184,216,42,50,43,50,46,,"CCGT D1_Integrated Programme Schedule;CIVILS;CONSTRUCTION;Power Island - Other External Areas;Generator Transformer",2,1,0.0000149054,0.0012207528,0.012207528,8,1.0,0.0003063745,0.0136986301,0.0030769231,0.0225,0.0031331593,0.0386100386,0.0179372197,1.0,0.0922489457
1.4.2.9.15-2,GNTX0020,"Generator TX - Cast vertical blinding",7112,"CCGTD1_IPS",TT_Task,"58767",-,-,-,100,TK_Complete,04/02/2019,05/01/2019,14/02/2019,07/01/2019,"GNTX0010 FF","GNTX0010","GNTX0030 FS,GNTX0070 SS","GNTX0030,GNTX0070",183,216,185,216,42,50,43,50,46,,"CCGT D1_Integrated Programme Schedule;CIVILS;CONSTRUCTION;Power Island - Other External Areas;Generator Transformer",1,1,0.0000126282,0.001017294,0.0124109868,10,1.0,0.0003421428,0.0068493151,0.0030769231,0.0190625,0.0026109661,0.0392535393,0.0224215247,1.0,0.1069049657
1.4.2.9.15-3,GNTX0030,"Generator TX - Construct base slabs",7112,"CCGTD1_IPS",TT_Task,"58767",-,-,-,100,TK_Complete,15/02/2019,08/01/2019,28/02/2019,12/01/2019,"GNTX0020 FS","GNTX0020","GNTX0040 FS,GNTX0050 FS,3.3a FS","GNTX0040,GNTX0050,3.3a",185,216,187,217,43,50,43,50,47,,"CCGT D1_Integrated Programme Schedule;CIVILS;CONSTRUCTION;Power Island - Other External Areas;Generator Transformer",1,3,0.0000102682,0.0008138352,0.0126144456,13,1.0,0.0003726758,0.0068493151,0.0092307692,0.0155,0.0020887728,0.0398970399,0.0291479821,1.0,0.1194158045
1.4.2.9.15-4,GNTX0040,"Generator TX - Construct equipment plinths",7112,"CCGTD1_IPS",TT_Task,"58767",-,-,-,100,TK_Complete,04/02/2019,13/01/2019,13/02/2019,25/01/2019,"GNTX0030 FS","GNTX0030","GNTX0050 FF,3.3a FF","GNTX0050,3.3a",183,217,185,219,42,50,43,51,46,,"CCGT D1_Integrated Programme Schedule;CIVILS;CONSTRUCTION;Power Island - Other External Areas;Generator Transformer",1,2,0.0,0.0006103764,0.0128179044,9,0.8,0.0001955306,0.0068493151,0.0061538462,0.0,0.0015665796,0.0405405405,0.0201793722,0.8,0.0468308814
1.4.2.9.15-5,GNTX0050,"Generator TX - Construct concrete blast walls",7112,"CCGTD1_IPS",TT_Task,"58767",-,-,-,100,TK_Complete,04/02/2019,22/01/2019,20/02/2019,12/02/2019,"GNTX0030 FS,GNTX0040 FF","GNTX0030,GNTX0040","3.3b FS","3.3b",183,218,186,221,42,51,43,51,46,,"CCGT D1_Integrated Programme Schedule;CIVILS;CONSTRUCTION;Power Island - Other External Areas;Generator Transformer",2,1,0.0000026499,0.0002034588,0.0130213632,16,0.4,0.0004510003,0.0136986301,0.0030769231,0.004,0.0005221932,0.0411840412,0.0358744395,0.4,0.1515091
1.4.2.9.15-6,EV039110,"Event 039(TX) - Power Island Phase 4 /5 resequencing amendment",7112,"CCGTD1_IPS",TT_Task,"58767",-,-,-,100,TK_Complete,26/11/2018,15/10/2018,25/12/2018,12/11/2018,"","","EV039210 FS","EV039210",173,204,177,208,40,47,41,48,40,,"CCGT D1_Integrated Programme Schedule;CIVILS;CONSTRUCTION;Power Island - Other External Areas;Generator Transformer",0,1,0.0,0.0016276704,0.0,29,1.0,0.0000812387,0.0,0.0030769231,0.0,0.0041775457,0.0,0.0650224215,1.0,0.0
1.4.2.9.15-7,EV039210,"Event 039(TX) - MV Aux.TX / open cut to the required formation level w/ a berm 5m wide at Zone A north PPW",7112,"CCGTD1_IPS",TT_Task,"58767",-,-,-,100,TK_Complete,26/01/2019,30/11/2018,30/01/2019,02/12/2018,"EV039110 FS","EV039110","EV039220 FS","EV039220",182,211,183,211,42,49,42,49,45,,"CCGT D1_Integrated Programme Schedule;CIVILS;CONSTRUCTION;Power Island - Other External Areas;Generator Transformer",1,1,0.0000002898,0.0014242116,0.0002034588,4,1.0,0.0001503957,0.0068493151,0.0030769231,0.0004375,0.0036553525,0.0006435006,0.0089686099,1.0,0.0283369572
1.4.2.9.15-8,EV039220,"Event 039(TX) - MV Aux.TX / conduct plate load test PL4",7112,"CCGTD1_IPS",TT_Task,"58767",-,-,-,100,TK_Complete,31/01/2019,03/12/2018,15/02/2019,13/12/2018,"EV039210 FS","EV039210","EV039230 FS","EV039230",183,211,185,212,42,49,43,49,46,,"CCGT D1_Integrated Programme Schedule;CIVILS;CONSTRUCTION;Power Island - Other External Areas;Generator Transformer",1,1,0.0000004968,0.0012207528,0.0004069176,15,1.0,0.000209244,0.0068493151,0.0030769231,0.00075,0.0031331593,0.0012870013,0.033632287,1.0,0.0524499399
1.4.2.9.15-9,EV039230,"Event 039(TX) - MV Aux.TX / construct foundation CT11-FT1 (Part 1 of 2)",7112,"CCGTD1_IPS",TT_Task,"58767",-,-,-,100,TK_Complete,16/02/2019,14/12/2018,26/02/2019,12/01/2019,"EV039220 FS","EV039220","EV039240 FS","EV039240",185,213,186,217,43,49,43,50,47,,"CCGT D1_Integrated Programme Schedule;CIVILS;CONSTRUCTION;Power Island - Other External Areas;Generator Transformer",1,1,0.0000006211,0.001017294,0.0006103764,10,0.0,0.0002593786,0.0068493151,0.0030769231,0.0009375,0.0026109661,0.0019305019,0.0224215247,0.0,0.0729924654
1.4.2.9.15-10,EV039240,"Event 039(TX) - MV Aux.TX / construct pit wall to +6.15 and plinth PL3",7112,"CCGTD1_IPS",TT_Task,"58767",-,-,-,100,TK_Complete,27/02/2019,13/01/2019,08/03/2019,24/01/2019,"EV039230 FS","EV039230","EV039250 FS","EV039250",187,217,188,218,43,50,43,51,48,,"CCGT D1_Integrated Programme Schedule;CIVILS;CONSTRUCTION;Power Island - Other External Areas;Generator Transformer",1,1,0.0000006625,0.0008138352,0.0008138352,9,0.8,0.0003021254,0.0068493151,0.0030769231,0.001,0.0020887728,0.0025740026,0.0201793722,0.8,0.0905078876
1.4.2.9.15-11,EV039250,"Event 039(TX) - MV Aux.TX / construct fire wall to +11.55 and corbels at G.L.AA",7112,"CCGTD1_IPS",TT_Task,"58767",-,-,-,100,TK_Complete,31/01/2019,25/01/2019,20/02/2019,04/02/2019,"EV039240 FS","EV039240","EV039260 FF,3.5 FF","EV039260,3.5",183,219,186,220,42,51,43,51,46,,"CCGT D1_Integrated Programme Schedule;CIVILS;CONSTRUCTION;Power Island - Other External Areas;Generator Transformer",1,2,0.0000006211,0.0006103764,0.001017294,20,1.0,0.000338598,0.0068493151,0.0061538462,0.0009375,0.0015665796,0.0032175032,0.0448430493,1.0,0.1054524737
1.4.2.9.15-12,EV039260,"Event 039(TX) - MV Aux.TX / apply hardener",7112,"CCGTD1_IPS",TT_Task,"58767",-,-,-,100,TK_Complete,01/04/2019,16/02/2019,02/04/2019,18/02/2019,"EV039250 FF","EV039250","EV039270 FS","EV039270",191,222,191,222,44,51,44,51,52,,"CCGT D1_Integrated Programme Schedule;CIVILS;CONSTRUCTION;Power Island - Other External Areas;Generator Transformer",1,1,0.0000002484,0.0002034588,0.0012207528,1,1.0,0.0003696143,0.0068493151,0.0030769231,0.000375,0.0005221932,0.0038610039,0.0022421525,1.0,0.1181613545
1.4.2.9.15-13,EV039270,"Event 039(TX) - MV Aux.TX / access for M&E",7112,"CCGTD1_IPS",TT_Mile,"58767",-,-,-,100,TK_Complete,03/04/2019,19/02/2019,03/04/2019,19/02/2019,"EV039260 FS","EV039260","","",192,222,192,222,44,51,44,51,52,,"CCGT D1_Integrated Programme Schedule;CIVILS;CONSTRUCTION;Power Island - Other External Areas;Generator Transformer",1,0,0.0,0.0,0.0014242116,0,1.0,0.0000812387,0.0068493151,0.0,0.0,0.0,0.0045045045,0.0,1.0,0.0
1.4.2.9.15-14,EV039310,"Event 039(TX) - Start-up TX / backfill to the required formation",7112,"CCGTD1_IPS",TT_Task,"58767",-,-,-,100,TK_Complete,31/01/2019,02/01/2019,04/02/2019,07/01/2019,"","","EV039320 FS,13586 SS","EV039320,13586",183,215,183,216,42,50,42,50,46,,"CCGT D1_Integrated Programme Schedule;CIVILS;CONSTRUCTION;Power Island - Other External Areas;Generator Transformer",0,1,0.0,0.001017294,0.0,4,0.6,0.0000812387,0.0,0.0030769231,0.0,0.0026109661,0.0,0.0089686099,0.6,0.0
1.4.2.9.15-15,EV039320,"Event 039(TX) - Start-up TX / construct foundation CT12-FT1",7112,"CCGTD1_IPS",TT_Task,"58767",-,-,-,100,TK_Complete,26/01/2019,12/01/2019,12/02/2019,22/01/2019,"EV039310 FS","EV039310","EV039330 FS","EV039330",182,217,184,218,42,50,43,51,45,,"CCGT D1_Integrated Programme Schedule;CIVILS;CONSTRUCTION;Power Island - Other External Areas;Generator Transformer",1,1,0.0000001656,0.0008138352,0.0002034588,17,1.0,0.0001503957,0.0068493151,0.0030769231,0.00025,0.0020887728,0.0006435006,0.0381165919,1.0,0.0283369572
1.4.2.9.15-16,EV039330,"Event 039(TX) - Start-up TX / construct plinth PL1 & PL2",7112,"CCGTD1_IPS",TT_Task,"58767",-,-,-,100,TK_Complete,13/02/2019,24/01/2019,22/02/2019,30/01/2019,"EV039320 FS","EV039320","EV039340 FF,3.4 FS","EV039340,3.4",185,218,186,219,43,51,43,51,47,,"CCGT D1_Integrated Programme Schedule;CIVILS;CONSTRUCTION;Power Island - Other External Areas;Generator Transformer",1,2,0.0000002484,0.0006103764,0.0004069176,9,1.0,0.000209244,0.0068493151,0.0061538462,0.000375,0.0015665796,0.0012870013,0.0201793722,1.0,0.0524499399
1.4.2.9.15-17,EV039340,"Event 039(TX) - Start-up TX / apply hardener",7112,"CCGTD1_IPS",TT_Task,"58767",-,-,-,100,TK_Complete,01/04/2019,12/02/2019,02/04/2019,13/02/2019,"EV039330 FF","EV039330","EV039350 FS","EV039350",191,221,191,221,44,51,44,51,52,,"CCGT D1_Integrated Programme Schedule;CIVILS;CONSTRUCTION;Power Island - Other External Areas;Generator Transformer",1,1,0.0000001242,0.0002034588,0.0006103764,1,1.0,0.0002593786,0.0068493151,0.0030769231,0.0001875,0.0005221932,0.0019305019,0.0022421525,1.0,0.0729924654
1.4.2.9.15-18,EV039350,"Event 039(TX) - Start-up TX / access for M&E",7112,"CCGTD1_IPS",TT_Mile,"58767",-,-,-,100,TK_Complete,03/04/2019,14/02/2019,03/04/2019,14/02/2019,"EV039340 FS","EV039340","","",192,221,192,221,44,51,44,51,52,,"CCGT D1_Integrated Programme Schedule;CIVILS;CONSTRUCTION;Power Island - Other External Areas;Generator Transformer",1,0,0.0,0.0,0.0008138352,0,1.0,0.0000812387,0.0068493151,0.0,0.0,0.0,0.0025740026,0.0,1.0,0.0
1.4.2.9.15-19,DEF_WK06,"DW06 - Construct Metal Fence and Removal Shelter at Transformer Area",7112,"CCGTD1_IPS",TT_Task,"58767",-,-,-,100,TK_Complete,10/01/2020,15/10/2019,10/03/2020,20/12/2019,"M&E_WK08 FS","M&E_WK08","SW1.1 FF","SW1.1",232,256,240,266,54,59,56,62,88,,"CCGT D1_Integrated Programme Schedule;CIVILS;CONSTRUCTION;Power Island - Other External Areas;Generator Transformer",1,1,0.0000000414,0.0002034588,0.0002034588,60,0.2,0.0001503957,0.0068493151,0.0030769231,0.0000625,0.0005221932,0.0006435006,0.134529148,0.2,0.0283369572
1.4.2.9.15-20,M&E_WK08,"M&E Works by Others #8 -  Erect Transformers and dress out (indicative only)",7112,"CCGTD1_IPS",TT_Task,"58767",-,-,-,100,TK_Complete,02/05/2019,11/03/2019,31/08/2019,14/10/2019,"","","GNTX0070 SF,DEF_WK06 FS","GNTX0070,DEF_WK06",196,225,213,256,45,52,49,59,57,,"CCGT D1_Integrated Programme Schedule;CIVILS;CONSTRUCTION;Power Island - Other External Areas;Generator Transformer"
1.4.2.9.15-21,EV039120,"Event 039(TX) - BA8 consent for Phase 5 excavation [APPROVAL DEEMED]",7112,"CCGTD1_IPS",TT_Task,"58767",-,-,-,100,TK_Complete,26/01/2019,11/12/2018,22/02/2019,07/01/2019,"","","GNTX0010 FF","GNTX0010",182,212,186,216,42,49,43,50,45,,"CCGT D1_Integrated Programme Schedule;CIVILS;CONSTRUCTION;Power Island - Other External Areas;Generator Transformer",0,1,0.0,0.0014242116,0.0,27,1.0,0.0000812387,0.0,0.0030769231,0.0,0.0036553525,0.0,0.0605381166,1.0,0.0
1.4.2.9.16,58766,"Pipe Rack 01 to the South of Turbine Hall",7112,"CCGTD1_IPS",WBS,"58765",,,,100,Complete,09/04/2019,23/02/2019,07/05/2019,07/03/2019,,,,,192,223,196,224,45,52,45,52,,,"CCGT D1_Integrated Programme Schedule;CIVILS;CONSTRUCTION;Power Island - Other External Areas"
1.4.2.9.16-1,PR010010,"Pipe Rack 01 - Foundation and Plinths",7112,"CCGTD1_IPS",TT_Task,"58766",-,-,-,100,TK_Complete,09/04/2019,23/02/2019,07/05/2019,07/03/2019,"CLPSUP15 FS,SBOE2BA8 FS,SBOE3BA8 FF,DPT10160 FS","CLPSUP15,SBOE2BA8,SBOE3BA8,DPT10160","CCWS0010 FS,3.6 FS","CCWS0010,3.6",192,223,196,224,45,52,45,52,53,,"CCGT D1_Integrated Programme Schedule;CIVILS;CONSTRUCTION;Power Island - Other External Areas;Pipe Rack 01 to the South of Turbine Hall",4,2,0.0000046579,0.0004069176,0.0128179044,28,1.0,0.0001918486,0.0273972603,0.0061538462,0.00703125,0.0010443864,0.0405405405,0.0627802691,1.0,0.0453221819
1.4.2.10,58757,"Power Island - HRSG, Stack, Diffuser Area",7112,"CCGTD1_IPS",WBS,"58711",,,,100,Complete,29/09/2017,26/09/2017,15/03/2018,,,,,,113,149,137,,26,34,32,,,,"CCGT D1_Integrated Programme Schedule;CIVILS;CONSTRUCTION"
1.4.2.10.1,58764,"Lift Installation",7112,"CCGTD1_IPS",WBS,"58757",,,,,NotStart,,,,,,,,,,,,,,,,,,,"CCGT D1_Integrated Programme Schedule;CIVILS;CONSTRUCTION;Power Island - HRSG, Stack, Diffuser Area"
1.4.2.10.2,58763,"Electrical Installation",7112,"CCGTD1_IPS",WBS,"58757",,,,,NotStart,,,,,,,,,,,,,,,,,,,"CCGT D1_Integrated Programme Schedule;CIVILS;CONSTRUCTION;Power Island - HRSG, Stack, Diffuser Area"
1.4.2.10.3,58758,"Foundation and Substructures",7112,"CCGTD1_IPS",WBS,"58757",,,,100,Complete,29/09/2017,26/09/2017,15/03/2018,,,,,,113,149,137,,26,34,32,,,,"CCGT D1_Integrated Programme Schedule;CIVILS;CONSTRUCTION;Power Island - HRSG, Stack, Diffuser Area"
1.4.2.10.3.1,58762,"Temporary Pad Foundation for HRSG Heavy Lift Crane",7112,"CCGTD1_IPS",WBS,"58758",,,,,NotStart,,,,,,,,,,,,,,,,,,,"CCGT D1_Integrated Programme Schedule;CIVILS;CONSTRUCTION;Power Island - HRSG, Stack, Diffuser Area;Foundation and Substructures"
1.4.2.10.3.2,58761,"Diffuser Area",7112,"CCGTD1_IPS",WBS,"58758",,,,,NotStart,,,,,,,,,,,,,,,,,,,"CCGT D1_Integrated Programme Schedule;CIVILS;CONSTRUCTION;Power Island - HRSG, Stack, Diffuser Area;Foundation and Substructures"
1.4.2.10.3.3,58760,"HRSG Area",7112,"CCGTD1_IPS",WBS,"58758",,,,100,Complete,24/11/2017,26/09/2017,15/03/2018,31/01/2018,,,,,121,149,137,167,28,34,32,39,,,"CCGT D1_Integrated Programme Schedule;CIVILS;CONSTRUCTION;Power Island - HRSG, Stack, Diffuser Area;Foundation and Substructures"
1.4.2.10.3.3-1,HRSG0020,"HRSG - Trim pile and prepare pile head",7112,"CCGTD1_IPS",TT_Task,"58760",-,-,-,100,TK_Complete,24/11/2017,26/09/2017,12/12/2017,19/11/2017,"","","HRSG0030 FF,S1050 SS","HRSG0030,S1050",121,149,123,157,28,34,28,36,14,,"CCGT D1_Integrated Programme Schedule;CIVILS;CONSTRUCTION;Power Island - HRSG, Stack, Diffuser Area;Foundation and Substructures;HRSG Area",0,1,0.0,0.002034588,0.0,18,0.0,0.0000812387,0.0,0.0030769231,0.0,0.0052219321,0.0,0.0403587444,0.0,0.0
1.4.2.10.3.3-2,HRSG0030,"HRSG - Capping plate and rebar starter",7112,"CCGTD1_IPS",TT_Task,"58760",-,-,-,100,TK_Complete,25/11/2017,29/09/2017,13/12/2017,30/11/2017,"HRSG0020 FF","HRSG0020","HRSG0070 FS,HRSG0015 FS","HRSG0070,HRSG0015",121,150,124,158,28,35,28,37,14,,"CCGT D1_Integrated Programme Schedule;CIVILS;CONSTRUCTION;Power Island - HRSG, Stack, Diffuser Area;Foundation and Substructures;HRSG Area",1,2,0.0000003726,0.0018311292,0.0002034588,18,0.0,0.0001503957,0.0068493151,0.0061538462,0.0005625,0.0046997389,0.0006435006,0.0403587444,0.0,0.0283369572
1.4.2.10.3.3-3,HRSG0050,"HRSG - Fix rebar and install cast-in /embed items (Part 1 of 2)",7112,"CCGTD1_IPS",TT_Task,"58760",-,-,-,100,TK_Complete,03/01/2018,02/12/2017,12/01/2018,13/01/2018,"CLPSUP10 FS,HRSG0015 FS","CLPSUP10,HRSG0015","HRSG0060 FS,HRSG0070 FS","HRSG0060,HRSG0070",127,159,128,165,29,37,29,38,16,,"CCGT D1_Integrated Programme Schedule;CIVILS;CONSTRUCTION;Power Island - HRSG, Stack, Diffuser Area;Foundation and Substructures;HRSG Area",2,2,0.000000414,0.0014242116,0.0008138352,9,0.0,0.0002695063,0.0136986301,0.0061538462,0.000625,0.0036553525,0.0025740026,0.0201793722,0.0,0.0771422723
1.4.2.10.3.3-4,HRSG0060,"HRSG - Pour pile cap (Part 1 of 2)",7112,"CCGTD1_IPS",TT_Task,"58760",-,-,-,100,TK_Complete,13/03/2018,15/01/2018,13/03/2018,15/01/2018,"HRSG0050 FS","HRSG0050","","",136,165,136,165,31,38,31,38,22,,"CCGT D1_Integrated Programme Schedule;CIVILS;CONSTRUCTION;Power Island - HRSG, Stack, Diffuser Area;Foundation and Substructures;HRSG Area",1,0,0.0,0.0,0.001017294,0,1.0,0.0000812387,0.0068493151,0.0,0.0,0.0,0.0032175032,0.0,1.0,0.0
1.4.2.10.3.3-5,HRSG0070,"HRSG - Fix rebar and install cast-in /embed items (Part 2 of 2)",7112,"CCGTD1_IPS",TT_Task,"58760",-,-,-,100,TK_Complete,13/03/2018,24/01/2018,14/03/2018,30/01/2018,"HRSG0030 FS,CLPSUP10 FS,HRSG0050 FS","HRSG0030,CLPSUP10,HRSG0050","HRSG0080 FS","HRSG0080",136,166,137,167,31,38,31,39,22,,"CCGT D1_Integrated Programme Schedule;CIVILS;CONSTRUCTION;Power Island - HRSG, Stack, Diffuser Area;Foundation and Substructures;HRSG Area",3,1,0.0000010351,0.001017294,0.001017294,1,0.8,0.0003351972,0.0205479452,0.0030769231,0.0015625,0.0026109661,0.0032175032,0.0022421525,0.8,0.1040589985
1.4.2.10.3.3-6,HRSG0015,"HRSG - Cast vertical blinding to the profile of caps and beams",7112,"CCGTD1_IPS",TT_Task,"58760",-,-,-,100,TK_Complete,28/12/2017,02/12/2017,02/01/2018,08/12/2017,"HRSG0030 FS","HRSG0030","HRSG0050 FS","HRSG0050",126,159,126,160,29,37,29,37,16,,"CCGT D1_Integrated Programme Schedule;CIVILS;CONSTRUCTION;Power Island - HRSG, Stack, Diffuser Area;Foundation and Substructures;HRSG Area",1,1,0.0000001656,0.0016276704,0.0004069176,5,1.0,0.0001879098,0.0068493151,0.0030769231,0.00025,0.0041775457,0.0012870013,0.0112107623,1.0,0.0437082833
1.4.2.10.3.3-7,HRSG0080,"HRSG - Pour pile cap (Part 2 of 2)",7112,"CCGTD1_IPS",TT_Task,"58760",-,-,-,100,TK_Complete,15/03/2018,31/01/2018,15/03/2018,31/01/2018,"HRSG0070 FS","HRSG0070","IRRI0020 FS,FWPT0020 FS,S1050 FF","IRRI0020,FWPT0020,S1050",137,167,137,167,32,39,32,39,22,,"CCGT D1_Integrated Programme Schedule;CIVILS;CONSTRUCTION;Power Island - HRSG, Stack, Diffuser Area;Foundation and Substructures;HRSG Area",1,2,0.0000009937,0.0008138352,0.0012207528,0,1.0,0.0000812387,0.0068493151,0.0061538462,0.0015,0.0020887728,0.0038610039,0.0,1.0,0.0
1.4.2.10.3.4,58759,"Exhaust Stack Area",7112,"CCGTD1_IPS",WBS,"58758",,,,100,Complete,29/09/2017,26/09/2017,13/03/2018,13/01/2018,,,,,113,149,136,165,26,34,31,38,,,"CCGT D1_Integrated Programme Schedule;CIVILS;CONSTRUCTION;Power Island - HRSG, Stack, Diffuser Area;Foundation and Substructures"
1.4.2.10.3.4-1,STCK0010,"Exhaust Stack - Further excavation from +4.2 mPD to the required formation level",7112,"CCGTD1_IPS",TT_Task,"58759",-,-,-,100,TK_Complete,16/11/2017,16/11/2017,17/11/2017,17/11/2017,"","","","",120,156,120,157,28,36,28,36,14,,"CCGT D1_Integrated Programme Schedule;CIVILS;CONSTRUCTION;Power Island - HRSG, Stack, Diffuser Area;Foundation and Substructures;Exhaust Stack Area",0,0,0.0,0.0,0.0,1,1.0,0.0000812387,0.0,0.0,0.0,0.0,0.0,0.0022421525,1.0,0.0
1.4.2.10.3.4-2,STCK0020,"Exhaust Stack - Trim pile and prepare pile head",7112,"CCGTD1_IPS",TT_Task,"58759",-,-,-,100,TK_Complete,29/09/2017,26/09/2017,12/10/2017,19/11/2017,"","","STCK0030 FF","STCK0030",113,149,115,157,26,34,26,36,12,,"CCGT D1_Integrated Programme Schedule;CIVILS;CONSTRUCTION;Power Island - HRSG, Stack, Diffuser Area;Foundation and Substructures;Exhaust Stack Area",0,1,0.0,0.001017294,0.0,13,0.0,0.0000812387,0.0,0.0030769231,0.0,0.0026109661,0.0,0.0291479821,0.0,0.0
1.4.2.10.3.4-3,STCK0030,"Exhaust Stack - Capping plate and rebar starter",7112,"CCGTD1_IPS",TT_Task,"58759",-,-,-,100,TK_Complete,21/11/2017,21/11/2017,29/11/2017,08/12/2017,"STCK0020 FF","STCK0020","STCK0015 FS","STCK0015",120,157,122,160,28,36,28,37,14,,"CCGT D1_Integrated Programme Schedule;CIVILS;CONSTRUCTION;Power Island - HRSG, Stack, Diffuser Area;Foundation and Substructures;Exhaust Stack Area",1,1,0.0000001656,0.0008138352,0.0002034588,8,0.0,0.0001503957,0.0068493151,0.0030769231,0.00025,0.0020887728,0.0006435006,0.0179372197,0.0,0.0283369572
1.4.2.10.3.4-4,STCK0040,"Exhaust Stack - Erect side formwork",7112,"CCGTD1_IPS",TT_Task,"58759",-,-,-,100,TK_Complete,06/01/2018,21/12/2017,12/01/2018,06/01/2018,"","","STCK0050 FF","STCK0050",127,161,128,164,29,37,29,38,16,,"CCGT D1_Integrated Programme Schedule;CIVILS;CONSTRUCTION;Power Island - HRSG, Stack, Diffuser Area;Foundation and Substructures;Exhaust Stack Area",0,1,0.0,0.0006103764,0.0,6,0.0,0.0000812387,0.0,0.0030769231,0.0,0.0015665796,0.0,0.0134529148,0.0,0.0
1.4.2.10.3.4-5,STCK0050,"Exhaust Stack - Fix rebar and install cast-in /embed items",7112,"CCGTD1_IPS",TT_Task,"58759",-,-,-,100,TK_Complete,15/01/2018,21/12/2017,27/01/2018,10/01/2018,"CLPSUP10 FS,STCK0015 FS,STCK0040 FF","CLPSUP10,STCK0015,STCK0040","STCK0060 FS","STCK0060",128,161,130,164,30,37,30,38,16,,"CCGT D1_Integrated Programme Schedule;CIVILS;CONSTRUCTION;Power Island - HRSG, Stack, Diffuser Area;Foundation and Substructures;Exhaust Stack Area",3,1,0.000000414,0.0004069176,0.001017294,12,0.4,0.0003662576,0.0205479452,0.0030769231,0.000625,0.0010443864,0.0032175032,0.0269058296,0.4,0.1167859447
1.4.2.10.3.4-6,STCK0060,"Exhaust Stack - Pour pile cap (incl' Lift Pit No.2)",7112,"CCGTD1_IPS",TT_Task,"58759",-,-,-,100,TK_Complete,12/03/2018,12/01/2018,12/03/2018,12/01/2018,"STCK0050 FS","STCK0050","STCK0070 FS,STCK0070 FF","STCK0070,STCK0070",136,165,136,165,31,38,31,38,22,,"CCGT D1_Integrated Programme Schedule;CIVILS;CONSTRUCTION;Power Island - HRSG, Stack, Diffuser Area;Foundation and Substructures;Exhaust Stack Area",1,1,0.0000002484,0.0002034588,0.0012207528,0,1.0,0.0000812387,0.0068493151,0.0030769231,0.000375,0.0005221932,0.0038610039,0.0,1.0,0.0
1.4.2.10.3.4-7,STCK0070,"Exhaust Stack - Strike formwork",7112,"CCGTD1_IPS",TT_Task,"58759",-,-,-,100,TK_Complete,13/03/2018,13/01/2018,13/03/2018,13/01/2018,"STCK0060 FS,STCK0060 FF","STCK0060,STCK0060","","",136,165,136,165,31,38,31,38,22,,"CCGT D1_Integrated Programme Schedule;CIVILS;CONSTRUCTION;Power Island - HRSG, Stack, Diffuser Area;Foundation and Substructures;Exhaust Stack Area",1,0,0.0,0.0,0.0014242116,0,1.0,0.0000812387,0.0068493151,0.0,0.0,0.0,0.0045045045,0.0,1.0,0.0
1.4.2.10.3.4-8,STCK0015,"Exhaust Stack - Cast blinding concrete",7112,"CCGTD1_IPS",TT_Task,"58759",-,-,-,100,TK_Complete,10/01/2018,13/12/2017,13/01/2018,14/12/2017,"STCK0030 FS","STCK0030","STCK0050 FS","STCK0050",128,160,128,160,29,37,29,37,16,,"CCGT D1_Integrated Programme Schedule;CIVILS;CONSTRUCTION;Power Island - HRSG, Stack, Diffuser Area;Foundation and Substructures;Exhaust Stack Area",1,1,0.0000002484,0.0006103764,0.0004069176,3,1.0,0.000209244,0.0068493151,0.0030769231,0.000375,0.0015665796,0.0012870013,0.0067264574,1.0,0.0524499399
1.4.2.11,58729,"Power Island - Turbine Hall Area",7112,"CCGTD1_IPS",WBS,"58711",,,,100,Complete,04/08/2017,04/08/2017,26/03/2020,12/03/2020,,,,,105,142,243,277,24,33,56,64,,,"CCGT D1_Integrated Programme Schedule;CIVILS;CONSTRUCTION"
1.4.2.11.1,58756,"Lift Installation",7112,"CCGTD1_IPS",WBS,"58729",,,,100,Complete,01/11/2019,23/09/2019,30/01/2020,12/03/2020,,,,,222,253,235,277,51,59,54,64,,,"CCGT D1_Integrated Programme Schedule;CIVILS;CONSTRUCTION;Power Island - Turbine Hall Area"
1.4.2.11.1-1,LIFT1030,"Lift No.1 - Lift Installation incl' T&C",7112,"CCGTD1_IPS",TT_Task,"58756",-,-,-,100,TK_Complete,01/11/2019,23/09/2019,01/01/2020,31/12/2019,"PROPE020 FS,LIFT1020 FS","PROPE020,LIFT1020","LIFT1040 FS","LIFT1040",222,253,231,267,51,59,53,62,81,,"CCGT D1_Integrated Programme Schedule;CIVILS;CONSTRUCTION;Power Island - Turbine Hall Area;Lift Installation",2,1,0.0000014905,0.0006103764,0.0026449644,61,0.0,0.0005646627,0.0136986301,0.0030769231,0.00225,0.0015665796,0.0083655084,0.1367713004,0.0,0.1980820578
1.4.2.11.1-2,LIFT1040,"Lift No.1 - Submit Form LE5 and EMSD Inspection",7112,"CCGTD1_IPS",TT_Task,"58756",-,-,-,100,TK_Complete,02/01/2020,19/02/2020,21/01/2020,04/03/2020,"LIFT1030 FS","LIFT1030","LIFT1050 FS","LIFT1050",231,274,233,276,53,64,54,64,87,,"CCGT D1_Integrated Programme Schedule;CIVILS;CONSTRUCTION;Power Island - Turbine Hall Area;Lift Installation",1,1,0.0000010351,0.0004069176,0.0028484232,19,1.0,0.0005621334,0.0068493151,0.0030769231,0.0015625,0.0010443864,0.009009009,0.0426008969,1.0,0.1970456661
1.4.2.11.1-3,LIFT1050,"Lift No.1 - Obtain Use Permit",7112,"CCGTD1_IPS",TT_Task,"58756",-,-,-,100,TK_Complete,22/01/2020,05/03/2020,30/01/2020,12/03/2020,"LIFT1040 FS","LIFT1040","TH4.1 FS","TH4.1",234,276,235,277,54,64,54,64,88,,"CCGT D1_Integrated Programme Schedule;CIVILS;CONSTRUCTION;Power Island - Turbine Hall Area;Lift Installation",1,1,0.0000004968,0.0002034588,0.003051882,8,1.0,0.0005602948,0.0068493151,0.0030769231,0.00075,0.0005221932,0.0096525097,0.0179372197,1.0,0.1962923376
1.4.2.11.2,58755,"Plumbing and Drainage Installation",7112,"CCGTD1_IPS",WBS,"58729",,,,100,Complete,08/03/2018,31/01/2018,30/08/2018,21/12/2019,,,,,136,167,161,266,31,39,37,62,,,"CCGT D1_Integrated Programme Schedule;CIVILS;CONSTRUCTION;Power Island - Turbine Hall Area"
1.4.2.11.3,58754,"Fire Services Installation",7112,"CCGTD1_IPS",WBS,"58729",,,,100,Complete,26/01/2019,28/05/2018,22/01/2020,10/03/2020,,,,,182,184,234,277,42,43,54,64,,,"CCGT D1_Integrated Programme Schedule;CIVILS;CONSTRUCTION;Power Island - Turbine Hall Area"
1.4.2.11.3-1,THFS0110,"Turbine Hall - Installation of fire alarm panels",7112,"CCGTD1_IPS",TT_Task,"58754",-,-,-,100,TK_Complete,02/01/2020,01/11/2019,15/01/2020,14/11/2019,"BDWK0050 FS,THEL0040 FS","BDWK0050,THEL0040","THFS0120 FF","THFS0120",231,259,233,260,53,60,54,60,87,,"CCGT D1_Integrated Programme Schedule;CIVILS;CONSTRUCTION;Power Island - Turbine Hall Area;Fire Services Installation",2,1,0.0000019874,0.001017294,0.0024415056,13,1.0,0.0001202383,0.0136986301,0.0030769231,0.003,0.0026109661,0.0077220077,0.0291479821,1.0,0.0159799962
1.4.2.11.3-2,THFS0120,"Turbine Hall - Installation of detectors incl' wiring and termination",7112,"CCGTD1_IPS",TT_Task,"58754",-,-,-,100,TK_Complete,02/01/2020,01/11/2019,15/01/2020,14/11/2019,"THFS0110 FF","THFS0110","THFS0140 FS,THFS0122 FF","THFS0140,THFS0122",231,259,233,260,53,60,54,60,87,,"CCGT D1_Integrated Programme Schedule;CIVILS;CONSTRUCTION;Power Island - Turbine Hall Area;Fire Services Installation",1,2,0.0000016562,0.0008138352,0.0026449644,13,1.0,0.0001835957,0.0068493151,0.0061538462,0.0025,0.0020887728,0.0083655084,0.0291479821,1.0,0.0419405981
1.4.2.11.3-3,THFS0130,"Turbine Hall - Installation of portable fire fighting equipment",7112,"CCGTD1_IPS",TT_Task,"58754",-,-,-,100,TK_Complete,08/01/2020,09/03/2020,09/01/2020,10/03/2020,"","","SW1.1 FF,S1020 FF","SW1.1,S1020",232,277,232,277,54,64,54,64,88,,"CCGT D1_Integrated Programme Schedule;CIVILS;CONSTRUCTION;Power Island - Turbine Hall Area;Fire Services Installation",0,1,0.0,0.0002034588,0.0,1,1.0,0.0000812387,0.0,0.0030769231,0.0,0.0005221932,0.0,0.0022421525,1.0,0.0
1.4.2.11.3-4,THFS0140,"Turbine Hall - Testing and Commisisoning to FS installation",7112,"CCGTD1_IPS",TT_Task,"58754",-,-,-,100,TK_Complete,16/01/2020,15/11/2019,22/01/2020,21/11/2019,"THFS0120 FS,THFS0124 FS","THFS0120,THFS0124","SW1.1 FF","SW1.1",233,261,234,261,54,60,54,61,88,,"CCGT D1_Integrated Programme Schedule;CIVILS;CONSTRUCTION;Power Island - Turbine Hall Area;Fire Services Installation",2,1,0.0000001656,0.0002034588,0.0032553408,6,1.0,0.0003362373,0.0136986301,0.0030769231,0.00025,0.0005221932,0.0102960103,0.0134529148,1.0,0.1044851745
1.4.2.11.3-5,THFS0122,"Turbine Hall - Lift No.1 detector installation",7112,"CCGTD1_IPS",TT_Task,"58754",-,-,-,100,TK_Complete,02/01/2020,01/11/2019,15/01/2020,14/11/2019,"THFS0120 FF","THFS0120","THFS0124 FF","THFS0124",231,259,233,260,53,60,54,60,87,,"CCGT D1_Integrated Programme Schedule;CIVILS;CONSTRUCTION;Power Island - Turbine Hall Area;Fire Services Installation",1,1,0.0000005797,0.0006103764,0.0028484232,13,1.0,0.0001881772,0.0068493151,0.0030769231,0.000875,0.0015665796,0.009009009,0.0291479821,1.0,0.0438178494
1.4.2.11.3-6,THFS0124,"Turbine Hall - Loft Platform detector installation",7112,"CCGTD1_IPS",TT_Task,"58754",-,-,-,100,TK_Complete,02/01/2020,01/11/2019,15/01/2020,14/11/2019,"THFS0122 FF","THFS0122","THFS0140 FS","THFS0140",231,259,233,260,53,60,54,60,87,,"CCGT D1_Integrated Programme Schedule;CIVILS;CONSTRUCTION;Power Island - Turbine Hall Area;Fire Services Installation",1,1,0.0000000828,0.0004069176,0.003051882,13,1.0,0.0002414706,0.0068493151,0.0030769231,0.000125,0.0010443864,0.0096525097,0.0291479821,1.0,0.0656547278
1.4.2.11.4,58753,"ACMV Installation",7112,"CCGTD1_IPS",WBS,"58729",,,,100,Complete,26/01/2019,28/05/2018,26/03/2020,20/12/2019,,,,,182,184,243,266,42,43,56,62,,,"CCGT D1_Integrated Programme Schedule;CIVILS;CONSTRUCTION;Power Island - Turbine Hall Area"
1.4.2.11.4-1,THAC0010,"Turbine Hall Area (incl' Switchgear Block) - Major ACMV Equipment on site",7112,"CCGTD1_IPS",TT_Mile,"58753",-,-,-,100,TK_Complete,01/04/2019,01/02/2019,01/04/2019,01/02/2019,"THEL0055 SS","THEL0055","THAC0050 FS","THAC0050",191,220,191,220,44,51,44,51,52,,"CCGT D1_Integrated Programme Schedule;CIVILS;CONSTRUCTION;Power Island - Turbine Hall Area;ACMV Installation",1,1,0.0000000828,0.0006103764,0.0024415056,0,1.0,0.0000812387,0.0068493151,0.0030769231,0.000125,0.0015665796,0.0077220077,0.0,1.0,0.0
1.4.2.11.4-2,THAC0050,"Switchgear Block - Installation of Indoor Unit (VEUs)",7112,"CCGTD1_IPS",TT_Task,"58753",-,-,-,100,TK_Complete,01/04/2019,04/02/2019,26/04/2019,30/03/2019,"BDWK0050 FS,THAC0010 FS","BDWK0050,THAC0010","THAC0060 FS","THAC0060",191,220,195,228,44,51,45,53,52,,"CCGT D1_Integrated Programme Schedule;CIVILS;CONSTRUCTION;Power Island - Turbine Hall Area;ACMV Installation",2,1,0.0000009937,0.0004069176,0.0026449644,25,0.0,0.0001983804,0.0136986301,0.0030769231,0.0015,0.0010443864,0.0083655084,0.0560538117,0.0,0.0479985952
1.4.2.11.4-3,THAC0060,"Switchgear Block (Turbine Hall Roof Level GL.7-10) - Installation of Outdoor Unit (VCUs)",7112,"CCGTD1_IPS",TT_Task,"58753",-,-,-,100,TK_Complete,02/09/2019,19/08/2019,15/10/2019,15/11/2019,"THAC0050 FS,EV058020 FS","THAC0050,EV058020","THAC0090 FS,SW1.1 FF","THAC0090,SW1.1",213,248,219,261,49,57,51,60,75,,"CCGT D1_Integrated Programme Schedule;CIVILS;CONSTRUCTION;Power Island - Turbine Hall Area;ACMV Installation",2,1,0.0000005383,0.0002034588,0.003051882,43,0.0,0.0002801405,0.0136986301,0.0030769231,0.0008125,0.0005221932,0.0096525097,0.0964125561,0.0,0.0814996252
1.4.2.11.4-4,THAC0070,"Turbine Hall Area / Loft Level - Installation of Roof Extraction Fan",7112,"CCGTD1_IPS",TT_Task,"58753",-,-,-,100,TK_Complete,02/09/2019,15/08/2019,28/10/2019,01/11/2019,"PLAT0070 FS","PLAT0070","THAC0080 FS","THAC0080",213,247,221,259,49,57,51,60,75,,"CCGT D1_Integrated Programme Schedule;CIVILS;CONSTRUCTION;Power Island - Turbine Hall Area;ACMV Installation",1,1,0.0000000518,0.0004069176,0.0002034588,56,0.0,0.0001437031,0.0068493151,0.0030769231,0.000078125,0.0010443864,0.0006435006,0.1255605381,0.0,0.025594671
1.4.2.11.4-5,THAC0020,"Turbine Hall Area / GL.5-7 - Ductwork and fan installation (ACMV)",7112,"CCGTD1_IPS",TT_Task,"58753",-,-,-,100,TK_Complete,02/09/2019,26/08/2019,07/11/2019,06/12/2019,"","","THAC0080 FF","THAC0080",213,249,223,264,49,58,52,61,75,,"CCGT D1_Integrated Programme Schedule;CIVILS;CONSTRUCTION;Power Island - Turbine Hall Area;ACMV Installation",0,1,0.0,0.0004069176,0.0,66,0.0,0.0000812387,0.0,0.0030769231,0.0,0.0010443864,0.0,0.1479820628,0.0,0.0
1.4.2.11.4-6,THAC0015,"Turbine Hall Area / GL.1-5 - Ductwork and fan installation (ACMV)",7112,"CCGTD1_IPS",TT_Task,"58753",-,-,-,100,TK_Complete,01/06/2019,02/05/2019,26/06/2019,29/11/2019,"","","THAC0090 FF,SW1.1 FF,THAC0080 FF","THAC0090,SW1.1,THAC0080",200,232,204,263,46,54,47,61,61,,"CCGT D1_Integrated Programme Schedule;CIVILS;CONSTRUCTION;Power Island - Turbine Hall Area;ACMV Installation",0,2,0.0,0.0004069176,0.0,25,0.0,0.0000812387,0.0,0.0061538462,0.0,0.0010443864,0.0,0.0560538117,0.0,0.0
1.4.2.11.4-7,THAC0080,"Turbine Hall Area - Final ductwork and air grille / diffuser",7112,"CCGTD1_IPS",TT_Task,"58753",-,-,-,100,TK_Complete,02/01/2020,26/10/2019,19/02/2020,06/12/2019,"THAC0020 FF,THAC0015 FF,THAC0070 FS","THAC0020,THAC0015,THAC0070","THAC0090 FF,SW1.1 FF","THAC0090,SW1.1",231,258,238,264,53,60,55,61,87,,"CCGT D1_Integrated Programme Schedule;CIVILS;CONSTRUCTION;Power Island - Turbine Hall Area;ACMV Installation",3,1,0.0000000932,0.0002034588,0.0008138352,48,1.0,0.0003418631,0.0205479452,0.0030769231,0.000140625,0.0005221932,0.0025740026,0.1076233184,1.0,0.1067903399
1.4.2.11.5,58752,"Electrical Installation",7112,"CCGTD1_IPS",WBS,"58729",,,,100,Complete,17/10/2017,16/09/2017,12/03/2020,21/02/2020,,,,,115,148,241,275,27,34,56,64,,,"CCGT D1_Integrated Programme Schedule;CIVILS;CONSTRUCTION;Power Island - Turbine Hall Area"
1.4.2.11.5-1,THEL0020,"Turbine Hall Area (GL.1-5) - Cable containment (Elect)",7112,"CCGTD1_IPS",TT_Task,"58752",-,-,-,100,TK_Complete,06/06/2019,18/03/2019,08/07/2019,07/11/2019,"THSS0460 FS","THSS0460","THEL1020 FF,THAC0025 SS,THAC0025 FF","THEL1020,THAC0025,THAC0025",201,226,205,259,46,52,48,60,62,,"CCGT D1_Integrated Programme Schedule;CIVILS;CONSTRUCTION;Power Island - Turbine Hall Area;Electrical Installation",1,1,0.0000053825,0.0004069176,0.0276703967,32,0.0,0.0004162484,0.0068493151,0.0030769231,0.008125,0.0010443864,0.0875160875,0.0717488789,0.0,0.1372695765
1.4.2.11.5-2,THEL0030,"Turbine Hall Area (GL.5-7) - Cable containment (Elect)",7112,"CCGTD1_IPS",TT_Task,"58752",-,-,-,100,TK_Complete,22/06/2019,22/04/2019,15/07/2019,21/11/2019,"","","THEL1030 FF,THAC0030 SS,THAC0030 FF","THEL1030,THAC0030,THAC0030",203,231,206,261,47,54,48,61,64,,"CCGT D1_Integrated Programme Schedule;CIVILS;CONSTRUCTION;Power Island - Turbine Hall Area;Electrical Installation",0,1,0.0,0.0004069176,0.0,23,0.0,0.0000812387,0.0,0.0030769231,0.0,0.0010443864,0.0,0.0515695067,0.0,0.0
1.4.2.11.5-3,THEL0040,"Turbine Hall Area (GL.8-10) - Cable containment (Elect)",7112,"CCGTD1_IPS",TT_Task,"58752",-,-,-,100,TK_Complete,04/07/2019,27/05/2019,22/07/2019,31/10/2019,"","","THEL1040 FF,THAC0030 FF,THFS0100 FF,THFS0110 FS","THEL1040,THAC0030,THFS0100,THFS0110",205,236,207,258,47,55,48,60,65,,"CCGT D1_Integrated Programme Schedule;CIVILS;CONSTRUCTION;Power Island - Turbine Hall Area;Electrical Installation",0,2,0.0,0.0014242116,0.0,18,0.0,0.0000812387,0.0,0.0061538462,0.0,0.0036553525,0.0,0.0403587444,0.0,0.0
1.4.2.11.5-4,THEL0050,"Turbine Hall Area (High/ Roof Level) - Cable containmen (Elect)",7112,"CCGTD1_IPS",TT_Task,"58752",-,-,-,100,TK_Complete,09/10/2018,28/05/2018,15/10/2018,17/10/2019,"THRF1470 FF,PLAT0070 FF","THRF1470,PLAT0070","THAC0035 SS,THAC0035 FF,THFS0100 SS,THEL1020 FF,THEL1030 FF,THEL1040 FF","THAC0035,THAC0035,THFS0100,THEL1020,THEL1030,THEL1040",166,184,167,256,38,43,39,59,37,,"CCGT D1_Integrated Programme Schedule;CIVILS;CONSTRUCTION;Power Island - Turbine Hall Area;Electrical Installation",2,3,0.0000276061,0.0008138352,0.0364191251,6,0.0,0.000940249,0.0136986301,0.0092307692,0.041671875,0.0020887728,0.1151866152,0.0134529148,0.0,0.3519778422
1.4.2.11.5-5,THEL0060,"Switchgear Block - Installation of LV Switchboard, Transformers, UPS, DBs, etc",7112,"CCGTD1_IPS",TT_Task,"58752",-,-,-,100,TK_Complete,02/07/2019,12/11/2018,27/08/2019,31/05/2019,"THEL0055 FS","THEL0055","THEL1060 FS,CLPCCR10 FS","THEL1060,CLPCCR10",204,208,212,237,47,48,49,55,65,,"CCGT D1_Integrated Programme Schedule;CIVILS;CONSTRUCTION;Power Island - Turbine Hall Area;Electrical Installation",1,1,0.0000005383,0.0004069176,0.0024415056,56,0.0,0.0001977917,0.0068493151,0.0030769231,0.0008125,0.0010443864,0.0077220077,0.1255605381,0.0,0.0477573454
1.4.2.11.5-6,THEL0055,"Turbine Hall Area (incl' Switchgear Block) - Major Electrical Equipment on site",7112,"CCGTD1_IPS",TT_Task,"58752",-,-,-,100,TK_Complete,01/06/2019,01/04/2019,30/06/2019,30/04/2019,"BDWK0050 FS","BDWK0050","THEL0060 FS,THAC0010 SS","THEL0060,THAC0010",200,228,204,232,46,53,47,54,61,,"CCGT D1_Integrated Programme Schedule;CIVILS;CONSTRUCTION;Power Island - Turbine Hall Area;Electrical Installation",1,2,0.0000013663,0.0012207528,0.0022380468,29,1.0,0.000136901,0.0068493151,0.0061538462,0.0020625,0.0031331593,0.0070785071,0.0650224215,1.0,0.0228075001
1.4.2.11.5-7,THEL1020,"Turbine Hall Area (GL.1-5) - Light fitting, power point, earting point incl. final termination",7112,"CCGTD1_IPS",TT_Task,"58752",-,-,-,100,TK_Complete,02/01/2020,08/11/2019,22/02/2020,07/02/2020,"THEL0020 FF,THEL0050 FF","THEL0020,THEL0050","THEL1060 FF,SW1.1 FF","THEL1060,SW1.1",231,260,238,273,53,60,55,63,87,,"CCGT D1_Integrated Programme Schedule;CIVILS;CONSTRUCTION;Power Island - Turbine Hall Area;Electrical Installation",2,1,0.00000462,0.0002034588,0.0488301119,51,0.0,0.0007032874,0.0136986301,0.0030769231,0.0069739583,0.0005221932,0.1544401544,0.1143497758,0.0,0.2548832555
1.4.2.11.5-8,THEL1030,"Turbine Hall Area (GL.5-7) - Light fitting, power point, earthing point incl. final termination",7112,"CCGTD1_IPS",TT_Task,"58752",-,-,-,100,TK_Complete,02/01/2020,06/12/2019,22/02/2020,07/02/2020,"THEL0030 FF,THEL0050 FF","THEL0030,THEL0050","THEL1060 FF,SW1.1 FF","THEL1060,SW1.1",231,264,238,273,53,61,55,63,87,,"CCGT D1_Integrated Programme Schedule;CIVILS;CONSTRUCTION;Power Island - Turbine Hall Area;Electrical Installation",2,1,0.0000019287,0.0002034588,0.0368260427,51,0.0,0.0004176485,0.0136986301,0.0030769231,0.0029114583,0.0005221932,0.1164736165,0.1143497758,0.0,0.1378432742
1.4.2.11.5-9,THEL1040,"Turbine Hall Area (GL.8-10) - Light fitting, power point, earthing point incl. final termination",7112,"CCGTD1_IPS",TT_Task,"58752",-,-,-,100,TK_Complete,21/01/2020,01/11/2019,12/03/2020,07/02/2020,"THEL0040 FF,THEL0050 FF","THEL0040,THEL0050","THEL1060 FF,SW1.1 FF","THEL1060,SW1.1",233,259,241,273,54,60,56,63,88,,"CCGT D1_Integrated Programme Schedule;CIVILS;CONSTRUCTION;Power Island - Turbine Hall Area;Electrical Installation",2,1,0.0000019287,0.0002034588,0.0368260427,51,0.0,0.000403601,0.0136986301,0.0030769231,0.0029114583,0.0005221932,0.1164736165,0.1143497758,0.0,0.1320873298
1.4.2.11.5-10,THEL1050,"Turbine Hall Area / Roof Level - Installation of Photovoltaic Power System",7112,"CCGTD1_IPS",TT_Task,"58752",-,-,-,100,TK_Complete,02/01/2020,12/10/2019,04/03/2020,14/11/2019,"","","THEL1060 FF","THEL1060",231,256,240,260,53,59,56,60,87,,"CCGT D1_Integrated Programme Schedule;CIVILS;CONSTRUCTION;Power Island - Turbine Hall Area;Electrical Installation",0,0,0.0,0.0,0.0,62,1.0,0.0000812387,0.0,0.0,0.0,0.0,0.0,0.1390134529,1.0,0.0
1.4.2.11.5-11,THEL0012,"Turbine Hall Area - Lightning Pit and Earth Pit",7112,"CCGTD1_IPS",TT_Task,"58752",-,-,-,100,TK_Complete,02/01/2020,22/07/2019,20/01/2020,18/12/2019,"PROSC060 FS,MCGZ1040 FF,MCGZ2060 FS","PROSC060,MCGZ1040,MCGZ2060","SW1.1 FF","SW1.1",231,244,233,265,53,57,54,62,87,,"CCGT D1_Integrated Programme Schedule;CIVILS;CONSTRUCTION;Power Island - Turbine Hall Area;Electrical Installation",3,1,0.0000003519,0.0002034588,0.0032553408,18,0.0,0.0008031998,0.0205479452,0.0030769231,0.00053125,0.0005221932,0.0102960103,0.0403587444,0.0,0.295822187
1.4.2.11.6,58751,"Overhead Crane Installation",7112,"CCGTD1_IPS",WBS,"58729",,,,100,Complete,23/04/2018,08/01/2018,04/09/2018,31/08/2018,,,,,142,164,161,198,33,38,37,46,,,"CCGT D1_Integrated Programme Schedule;CIVILS;CONSTRUCTION;Power Island - Turbine Hall Area"
1.4.2.11.6-1,OHCN0010,"Overhead Crane - E&M Fit-out and T&C",7112,"CCGTD1_IPS",TT_Task,"58751",-,-,-,100,TK_Complete,26/07/2018,20/07/2018,04/09/2018,31/08/2018,"CLPSUP20 FS,OHCN0007 FS,OHCN0008 FF","CLPSUP20,OHCN0007,OHCN0008","","",156,192,161,198,36,44,37,46,33,,"CCGT D1_Integrated Programme Schedule;CIVILS;CONSTRUCTION;Power Island - Turbine Hall Area;Overhead Crane Installation",3,0,0.0,0.0,0.0236012208,40,1.0,0.0006956512,0.0205479452,0.0,0.0,0.0,0.0746460746,0.0896860987,1.0,0.2517543363
1.4.2.11.6-2,OHCN0005,"Overhead Crane - Unpack and Checking",7112,"CCGTD1_IPS",TT_Task,"58751",-,-,-,100,TK_Complete,01/05/2018,08/01/2018,14/05/2018,19/01/2018,"CLPSUP20 FS","CLPSUP20","","",143,164,145,166,33,38,34,38,26,,"CCGT D1_Integrated Programme Schedule;CIVILS;CONSTRUCTION;Power Island - Turbine Hall Area;Overhead Crane Installation",1,0,0.0,0.0,0.0002034588,13,1.0,0.0000982018,0.0068493151,0.0,0.0,0.0,0.0006435006,0.0291479821,1.0,0.0069505744
1.4.2.11.6-3,OHCN0006,"Overhead Crane - Pre-assembly at Green Lawn",7112,"CCGTD1_IPS",TT_Task,"58751",-,-,-,100,TK_Complete,23/04/2018,02/03/2018,23/05/2018,29/03/2018,"","","OHCN0007 FS","OHCN0007",142,172,147,175,33,40,34,41,25,,"CCGT D1_Integrated Programme Schedule;CIVILS;CONSTRUCTION;Power Island - Turbine Hall Area;Overhead Crane Installation",0,1,0.0,0.001017294,0.0,30,1.0,0.0000812387,0.0,0.0030769231,0.0,0.0026109661,0.0,0.067264574,1.0,0.0
1.4.2.11.6-4,OHCN0007,"Overhead Crane - Lift up and sit on position 1 of 2",7112,"CCGTD1_IPS",TT_Task,"58751",-,-,-,100,TK_Complete,06/08/2018,14/07/2018,08/08/2018,16/07/2018,"OHCN0006 FS,THSS0280 FS,OHCN0006c FS,OHCN0006f FS","OHCN0006,THSS0280,OHCN0006c,OHCN0006f","OHCN0010 FS,OHCN0008 FS","OHCN0010,OHCN0008",157,191,158,191,36,44,36,44,34,,"CCGT D1_Integrated Programme Schedule;CIVILS;CONSTRUCTION;Power Island - Turbine Hall Area;Overhead Crane Installation",4,2,0.0000143258,0.0008138352,0.0229908444,2,1.0,0.0006339787,0.0273972603,0.0061538462,0.021625,0.0020887728,0.0727155727,0.0044843049,1.0,0.2264841467
1.4.2.11.6-5,OHCN0008,"Overhead Crane - Lift up and sit on position 2 of 2",7112,"CCGTD1_IPS",TT_Task,"58751",-,-,-,100,TK_Complete,08/08/2018,17/07/2018,10/08/2018,19/07/2018,"OHCN0007 FS","OHCN0007","OHCN0010 FF,DEF_WK01 FS","OHCN0010,DEF_WK01",158,191,158,191,36,44,36,44,34,,"CCGT D1_Integrated Programme Schedule;CIVILS;CONSTRUCTION;Power Island - Turbine Hall Area;Overhead Crane Installation",1,2,0.0000050513,0.0006103764,0.0231943032,2,1.0,0.0001069531,0.0068493151,0.0061538462,0.007625,0.0015665796,0.0733590734,0.0044843049,1.0,0.0105364328
1.4.2.11.6-6,OHCN0006a,"Overhead Crane / Event - Crane rail hold down bolt on site (supplied nby Siemens)",7112,"CCGTD1_IPS",TT_Mile,"58751",-,-,-,100,TK_Complete,26/05/2018,26/05/2018,26/05/2018,26/05/2018,"","","OHCN0006b FS","OHCN0006b",147,184,147,184,34,42,34,42,29,,"CCGT D1_Integrated Programme Schedule;CIVILS;CONSTRUCTION;Power Island - Turbine Hall Area;Overhead Crane Installation",0,1,0.0,0.002034588,0.0,0,1.0,0.0000812387,0.0,0.0030769231,0.0,0.0052219321,0.0,0.0,1.0,0.0
1.4.2.11.6-7,OHCN0006b,"Overhead Crane / Event - Bolt inspection and handover",7112,"CCGTD1_IPS",TT_Task,"58751",-,-,-,100,TK_Complete,26/06/2018,26/05/2018,29/06/2018,29/05/2018,"OHCN0006a FS","OHCN0006a","OHCN0006c FS","OHCN0006c",151,184,152,184,35,42,35,43,31,,"CCGT D1_Integrated Programme Schedule;CIVILS;CONSTRUCTION;Power Island - Turbine Hall Area;Overhead Crane Installation",1,1,0.0000003726,0.0018311292,0.0002034588,3,1.0,0.0001503957,0.0068493151,0.0030769231,0.0005625,0.0046997389,0.0006435006,0.0067264574,1.0,0.0283369572
1.4.2.11.6-8,OHCN0006c,"Overhead Crane / Event - Rail installation / Weld on ground",7112,"CCGTD1_IPS",TT_Task,"58751",-,-,-,100,TK_Complete,26/06/2018,30/05/2018,10/07/2018,13/06/2018,"OHCN0006b FS","OHCN0006b","OHCN0007 FS,OHCN0006d FS","OHCN0007,OHCN0006d",151,184,153,186,35,43,35,43,31,,"CCGT D1_Integrated Programme Schedule;CIVILS;CONSTRUCTION;Power Island - Turbine Hall Area;Overhead Crane Installation",1,2,0.0000006625,0.0016276704,0.0004069176,14,1.0,0.000209244,0.0068493151,0.0061538462,0.001,0.0041775457,0.0012870013,0.0313901345,1.0,0.0524499399
1.4.2.11.6-9,OHCN0006d,"Overhead Crane / Event - Rail installation / Lift-up",7112,"CCGTD1_IPS",TT_Task,"58751",-,-,-,100,TK_Complete,26/06/2018,14/06/2018,29/06/2018,17/06/2018,"OHCN0006c FS","OHCN0006c","OHCN0006e FS","OHCN0006e",151,186,152,187,35,43,35,43,31,,"CCGT D1_Integrated Programme Schedule;CIVILS;CONSTRUCTION;Power Island - Turbine Hall Area;Overhead Crane Installation",1,1,0.0000002484,0.0014242116,0.0006103764,3,1.0,0.0001881226,0.0068493151,0.0030769231,0.000375,0.0036553525,0.0019305019,0.0067264574,1.0,0.0437954792
1.4.2.11.6-10,OHCN0006f,"Overhead Crane / Event - Rail installation / Clip down",7112,"CCGTD1_IPS",TT_Task,"58751",-,-,-,100,TK_Complete,26/07/2018,27/06/2018,05/08/2018,13/07/2018,"OHCN0006e FS","OHCN0006e","OHCN0007 FS","OHCN0007",156,188,157,191,36,44,36,44,33,,"CCGT D1_Integrated Programme Schedule;CIVILS;CONSTRUCTION;Power Island - Turbine Hall Area;Overhead Crane Installation",1,1,0.000000414,0.001017294,0.001017294,10,0.4,0.0002868564,0.0068493151,0.0030769231,0.000625,0.0026109661,0.0032175032,0.0224215247,0.4,0.0842514602
1.4.2.11.6-11,OHCN0006e,"Overhead Crane / Event - Rail installation / Re-delivery of bolts",7112,"CCGTD1_IPS",TT_Task,"58751",-,-,-,100,TK_Complete,26/06/2018,18/06/2018,04/07/2018,26/06/2018,"OHCN0006d FS","OHCN0006d","OHCN0006f FS","OHCN0006f",151,187,153,188,35,43,35,44,31,,"CCGT D1_Integrated Programme Schedule;CIVILS;CONSTRUCTION;Power Island - Turbine Hall Area;Overhead Crane Installation",1,1,0.0000003726,0.0012207528,0.0008138352,8,1.0,0.0002414335,0.0068493151,0.0030769231,0.0005625,0.0031331593,0.0025740026,0.0179372197,1.0,0.0656395154
1.4.2.11.7,58750,"Other Building Works",7112,"CCGTD1_IPS",WBS,"58729",,,,100,Complete,16/10/2018,10/05/2018,25/02/2020,27/02/2020,,,,,167,181,238,275,39,42,55,64,,,"CCGT D1_Integrated Programme Schedule;CIVILS;CONSTRUCTION;Power Island - Turbine Hall Area"
1.4.2.11.7-1,BDWK0020,"Switchgear Block - Construct internal concrete wall 1/F",7112,"CCGTD1_IPS",TT_Task,"58750",-,-,-,100,TK_Complete,26/01/2019,24/10/2018,22/02/2019,12/01/2019,"THSS2240 FS,BDWK0015 FS","THSS2240,BDWK0015","","",182,205,186,217,42,48,43,50,45,,"CCGT D1_Integrated Programme Schedule;CIVILS;CONSTRUCTION;Power Island - Turbine Hall Area;Other Building Works",2,0,0.0,0.0,0.0028484232,27,0.0,0.0002195528,0.0136986301,0.0,0.0,0.0,0.009009009,0.0605381166,0.0,0.0566739144
1.4.2.11.7-2,BDWK0010,"Lube Oil Module - Construct 1m high bund wall",7112,"CCGTD1_IPS",TT_Task,"58750",-,-,-,100,TK_Complete,16/10/2018,15/08/2018,26/10/2018,24/08/2018,"","","BDWK0030 FS","BDWK0030",167,195,169,197,39,45,39,45,37,,"CCGT D1_Integrated Programme Schedule;CIVILS;CONSTRUCTION;Power Island - Turbine Hall Area;Other Building Works",0,1,0.0,0.0004069176,0.0,10,1.0,0.0000812387,0.0,0.0030769231,0.0,0.0010443864,0.0,0.0224215247,1.0,0.0
1.4.2.11.7-3,BDWK0030,"Turbine Building (GL001) - ABWF works",7112,"CCGTD1_IPS",TT_Task,"58750",-,-,-,100,TK_Complete,26/01/2019,01/09/2018,22/02/2019,27/02/2020,"BDWK0010 FS","BDWK0010","SW1.1 FF","SW1.1",182,198,186,275,42,46,43,64,45,,"CCGT D1_Integrated Programme Schedule;CIVILS;CONSTRUCTION;Power Island - Turbine Hall Area;Other Building Works",1,1,0.0000000414,0.0002034588,0.0002034588,27,0.0,0.0001503957,0.0068493151,0.0030769231,0.0000625,0.0005221932,0.0006435006,0.0605381166,0.0,0.0283369572
1.4.2.11.7-4,BDWK0040,"Condensate Polishing Plant (GL002) - ABWF works",7112,"CCGTD1_IPS",TT_Task,"58750",-,-,-,100,TK_Complete,23/02/2019,07/12/2018,01/03/2019,27/02/2020,"THPP0180 FS","THPP0180","SW1.1 FF","SW1.1",186,212,187,275,43,49,43,64,48,,"CCGT D1_Integrated Programme Schedule;CIVILS;CONSTRUCTION;Power Island - Turbine Hall Area;Other Building Works",1,1,0.0000007867,0.0002034588,0.017293998,6,0.0,0.0003284178,0.0068493151,0.0030769231,0.0011875,0.0005221932,0.0546975547,0.0134529148,0.0,0.101281161
1.4.2.11.7-5,BDWK0050,"Switchgear Block G/F - ABWF works",7112,"CCGTD1_IPS",TT_Task,"58750",-,-,-,100,TK_Complete,26/01/2019,04/10/2018,01/03/2019,30/03/2019,"THSS2210 FS","THSS2210","THEL0055 FS,THAC0050 FS,THFS0110 FS,THAC0045 SS,P3_Rooms FF","THEL0055,THAC0050,THFS0110,THAC0045,P3_Rooms",182,202,187,228,42,47,43,53,45,,"CCGT D1_Integrated Programme Schedule;CIVILS;CONSTRUCTION;Power Island - Turbine Hall Area;Other Building Works",1,4,0.0000053411,0.0026449644,0.002034588,34,0.0,0.0001510552,0.0068493151,0.0123076923,0.0080625,0.0067885117,0.0064350064,0.0762331839,0.0,0.0286071618
1.4.2.11.7-6,BDWK0060,"Switchgear Block 1/F - ABWF works",7112,"CCGTD1_IPS",TT_Task,"58750",-,-,-,100,TK_Complete,26/01/2019,28/11/2018,01/03/2019,30/03/2019,"THSS2400 FS","THSS2400","BDWK0100 SS,BDWK0070 SS,THAC0045 FF,P3_Rooms FF","BDWK0100,BDWK0070,THAC0045,P3_Rooms",182,210,187,228,42,49,43,53,45,,"CCGT D1_Integrated Programme Schedule;CIVILS;CONSTRUCTION;Power Island - Turbine Hall Area;Other Building Works",1,3,0.000000207,0.001017294,0.0002034588,34,0.0,0.0001503957,0.0068493151,0.0092307692,0.0003125,0.0026109661,0.0006435006,0.0762331839,0.0,0.0283369572
1.4.2.11.7-7,BDWK0110,"Finishes to perimeter concrete walls (i.e. tiling)",7112,"CCGTD1_IPS",TT_Task,"58750",-,-,-,100,TK_Complete,02/01/2020,06/11/2019,25/02/2020,24/12/2019,"RCWL0010 FS,RCWL0030 FS,RCWL0040 FS,RCWL0050 FS,RCWL0060 FS,RCWL0070 FS,RCWL0080 FS,RCWL0090 FS,RCWL0100 FS,RCWL0110 FS,RCWL0120 FS,RCWL0130 FS,RCWL0140 FS","RCWL0010,RCWL0030,RCWL0040,RCWL0050,RCWL0060,RCWL0070,RCWL0080,RCWL0090,RCWL0100,RCWL0110,RCWL0120,RCWL0130,RCWL0140","SW1.1 FF","SW1.1",231,259,238,266,53,60,55,62,87,,"CCGT D1_Integrated Programme Schedule;CIVILS;CONSTRUCTION;Power Island - Turbine Hall Area;Other Building Works",13,1,0.0000011593,0.0002034588,0.0258392675,54,1.0,0.0010314687,0.0890410959,0.0030769231,0.00175,0.0005221932,0.0817245817,0.1210762332,1.0,0.3893549358
1.4.2.11.7-8,BDWK0100,"Doors, louvre, roller shutters, handrails, etc",7112,"CCGTD1_IPS",TT_Task,"58750",-,-,-,100,TK_Complete,01/04/2019,18/03/2019,13/08/2019,27/02/2020,"BDWK0060 SS","BDWK0060","SW1.1 FF","SW1.1",191,226,210,275,44,52,49,64,51,,"CCGT D1_Integrated Programme Schedule;CIVILS;CONSTRUCTION;Power Island - Turbine Hall Area;Other Building Works",1,1,0.0000000828,0.0002034588,0.0004069176,134,0.0,0.0001963576,0.0068493151,0.0030769231,0.000125,0.0005221932,0.0012870013,0.3004484305,0.0,0.0471697446
1.4.2.11.7-9,BDWK0080XX,"Suespended ceiling to Control Room and ELV Room [descoped; TBC]",7112,"CCGTD1_IPS",TT_Task,"58750",-,-,-,100,TK_Complete,02/05/2019,08/04/2019,17/05/2019,11/05/2019,"BDWK0070 FF","BDWK0070","","",196,229,198,234,45,53,46,54,57,,"CCGT D1_Integrated Programme Schedule;CIVILS;CONSTRUCTION;Power Island - Turbine Hall Area;Other Building Works",1,0,0.0,0.0,0.0034587996,15,0.0,0.0003709272,0.0068493151,0.0,0.0,0.0,0.0109395109,0.033632287,0.0,0.1186993034
1.4.2.11.7-10,BDWK0070,"Raised floor to Electronic Equipment and Control Room",7112,"CCGTD1_IPS",TT_Task,"58750",-,-,-,100,TK_Complete,02/05/2019,08/04/2019,17/05/2019,11/05/2019,"THSS2420 FS,BDWK0060 SS","THSS2420,BDWK0060","BDWK0080XX FF","BDWK0080XX",196,229,198,234,45,53,46,54,57,,"CCGT D1_Integrated Programme Schedule;CIVILS;CONSTRUCTION;Power Island - Turbine Hall Area;Other Building Works",2,1,0.0000006625,0.0002034588,0.0032553408,15,0.0,0.0003400394,0.0136986301,0.0030769231,0.001,0.0005221932,0.0102960103,0.033632287,0.0,0.1060430943
1.4.2.11.7-11,BDWK0015,"Switchgear Block - Construct internal concrete wall G/F",7112,"CCGTD1_IPS",TT_Task,"58750",-,-,-,100,TK_Complete,27/10/2018,10/05/2018,16/11/2018,08/01/2019,"","","BDWK0020 FS","BDWK0020",169,181,172,216,39,42,40,50,38,,"CCGT D1_Integrated Programme Schedule;CIVILS;CONSTRUCTION;Power Island - Turbine Hall Area;Other Building Works",0,1,0.0,0.0002034588,0.0,20,0.0,0.0000812387,0.0,0.0030769231,0.0,0.0005221932,0.0,0.0448430493,0.0,0.0
1.4.2.11.8,58749,"Platforms, Walkways, Gratings",7112,"CCGTD1_IPS",WBS,"58729",,,,100,Complete,26/01/2019,13/08/2018,29/09/2019,11/09/2019,,,,,182,195,217,251,42,45,50,58,,,"CCGT D1_Integrated Programme Schedule;CIVILS;CONSTRUCTION;Power Island - Turbine Hall Area"
1.4.2.11.8-1,PLAT0060,"Crane Walkway, Steel Platforms and Staircases",7112,"CCGTD1_IPS",TT_Task,"58749",-,-,-,100,TK_Complete,26/01/2019,13/08/2018,22/02/2019,19/03/2019,"CLPSUP45 FS","CLPSUP45","","",182,195,186,226,42,45,43,52,45,,"CCGT D1_Integrated Programme Schedule;CIVILS;CONSTRUCTION;Power Island - Turbine Hall Area;Platforms, Walkways, Gratings",1,0,0.0,0.0,0.0002034588,27,0.0,0.0001503957,0.0068493151,0.0,0.0,0.0,0.0006435006,0.0605381166,0.0,0.0283369572
1.4.2.11.8-2,PLAT0070,"GMS grating at Loft Level at +37.8",7112,"CCGTD1_IPS",TT_Task,"58749",-,-,-,100,TK_Complete,01/08/2019,20/06/2019,29/09/2019,11/09/2019,"","","THAC0070 FS,THEL0050 FF","THAC0070,THEL0050",209,239,217,251,48,55,50,58,68,,"CCGT D1_Integrated Programme Schedule;CIVILS;CONSTRUCTION;Power Island - Turbine Hall Area;Platforms, Walkways, Gratings",0,2,0.0,0.0014242116,0.0,59,0.0,0.0000812387,0.0,0.0061538462,0.0,0.0036553525,0.0,0.1322869955,0.0,0.0
1.4.2.11.9,58746,"Facade",7112,"CCGTD1_IPS",WBS,"58729",,,,100,Complete,26/06/2018,12/04/2018,03/02/2020,24/01/2020,,,,,151,177,235,271,35,41,55,63,,,"CCGT D1_Integrated Programme Schedule;CIVILS;CONSTRUCTION;Power Island - Turbine Hall Area"
1.4.2.11.9.1,58748,"Metal Cladding, Louvre, Glazing & Window",7112,"CCGTD1_IPS",WBS,"58746",,,,100,Complete,26/11/2018,31/08/2018,03/02/2020,24/01/2020,,,,,173,198,235,271,40,46,55,63,,,"CCGT D1_Integrated Programme Schedule;CIVILS;CONSTRUCTION;Power Island - Turbine Hall Area;Facade"
1.4.2.11.9.1-1,MCGZ0010,"North Elevation GL.1-5 / Cleats, purlins, bridging, bracing, etc",7112,"CCGTD1_IPS",TT_Task,"58748",-,-,-,100,TK_Complete,26/11/2018,27/09/2018,08/12/2018,15/01/2019,"","","MCGZ0020 FS","MCGZ0020",173,201,175,217,40,47,40,50,40,,"CCGT D1_Integrated Programme Schedule;CIVILS;CONSTRUCTION;Power Island - Turbine Hall Area;Facade;Metal Cladding, Louvre, Glazing & Window",0,1,0.0,0.001017294,0.0,12,0.0,0.0000812387,0.0,0.0030769231,0.0,0.0026109661,0.0,0.0269058296,0.0,0.0
1.4.2.11.9.1-2,MCGZ0020,"North Elevation GL.1-5 / Kalbau",7112,"CCGTD1_IPS",TT_Task,"58748",-,-,-,100,TK_Complete,23/02/2019,25/12/2018,09/03/2019,19/01/2019,"MCGZ0010 FS","MCGZ0010","MCGZ0030 FF,TH1.3 FS","MCGZ0030,TH1.3",186,214,188,218,43,50,43,50,48,,"CCGT D1_Integrated Programme Schedule;CIVILS;CONSTRUCTION;Power Island - Turbine Hall Area;Facade;Metal Cladding, Louvre, Glazing & Window",1,2,0.0000001656,0.0008138352,0.0002034588,14,0.0,0.0001503957,0.0068493151,0.0061538462,0.00025,0.0020887728,0.0006435006,0.0313901345,0.0,0.0283369572
1.4.2.11.9.1-3,MCGZ0030,"North Elevation GL.1-5 / Vapour barrier & ST clips",7112,"CCGTD1_IPS",TT_Task,"58748",-,-,-,100,TK_Complete,01/02/2019,14/01/2019,28/02/2019,24/01/2019,"MCGZ0020 FF","MCGZ0020","MCGZ1010 FF","MCGZ1010",183,217,187,218,42,50,43,51,46,,"CCGT D1_Integrated Programme Schedule;CIVILS;CONSTRUCTION;Power Island - Turbine Hall Area;Facade;Metal Cladding, Louvre, Glazing & Window",1,1,0.0000001656,0.0004069176,0.0004069176,27,1.0,0.000209244,0.0068493151,0.0030769231,0.00025,0.0010443864,0.0012870013,0.0605381166,1.0,0.0524499399
1.4.2.11.9.1-4,MCGZ0040,"East Elevation at GL.1 / Mullion & transom",7112,"CCGTD1_IPS",TT_Task,"58748",-,-,-,100,TK_Complete,26/01/2019,13/12/2018,09/03/2019,14/02/2019,"","","MCGZ0050 FF","MCGZ0050",182,212,188,221,42,49,43,51,45,,"CCGT D1_Integrated Programme Schedule;CIVILS;CONSTRUCTION;Power Island - Turbine Hall Area;Facade;Metal Cladding, Louvre, Glazing & Window",0,1,0.0,0.0012207528,0.0,42,0.0,0.0000812387,0.0,0.0030769231,0.0,0.0031331593,0.0,0.0941704036,0.0,0.0
1.4.2.11.9.1-5,MCGZ0050,"East Elevation at GL.1 / Glazing panels",7112,"CCGTD1_IPS",TT_Task,"58748",-,-,-,100,TK_Complete,11/03/2019,24/01/2019,02/05/2019,03/03/2019,"MCGZ0040 FF","MCGZ0040","TH2.5 FS,MCGZ2050 FS","TH2.5,MCGZ2050",188,218,196,224,44,51,45,52,48,,"CCGT D1_Integrated Programme Schedule;CIVILS;CONSTRUCTION;Power Island - Turbine Hall Area;Facade;Metal Cladding, Louvre, Glazing & Window",1,2,0.000000207,0.001017294,0.0002034588,52,1.0,0.0001503957,0.0068493151,0.0061538462,0.0003125,0.0026109661,0.0006435006,0.1165919283,1.0,0.0283369572
1.4.2.11.9.1-6,MCGZ0070,"East Elevation at GL.1 / Subframe for aluminum features",7112,"CCGTD1_IPS",TT_Task,"58748",-,-,-,100,TK_Complete,04/04/2019,11/02/2019,24/04/2019,31/05/2019,"THRF5010 FF,THRF5020 FF","THRF5010,THRF5020","MCGZ1040 FF","MCGZ1040",192,221,195,237,44,51,45,55,52,,"CCGT D1_Integrated Programme Schedule;CIVILS;CONSTRUCTION;Power Island - Turbine Hall Area;Facade;Metal Cladding, Louvre, Glazing & Window",2,1,0.0000001242,0.0006103764,0.0004069176,20,0.0,0.0001641042,0.0136986301,0.0030769231,0.0001875,0.0015665796,0.0012870013,0.0448430493,0.0,0.0339539831
1.4.2.11.9.1-7,MCGZ0080,"South Elevation GL.1-5 / Cleats, purlins, bridging, bracing, etc",7112,"CCGTD1_IPS",TT_Task,"58748",-,-,-,100,TK_Complete,26/11/2018,03/10/2018,23/02/2019,16/01/2019,"","","MCGZ0090 FF","MCGZ0090",173,202,186,217,40,47,43,50,40,,"CCGT D1_Integrated Programme Schedule;CIVILS;CONSTRUCTION;Power Island - Turbine Hall Area;Facade;Metal Cladding, Louvre, Glazing & Window",0,1,0.0,0.001017294,0.0,89,0.0,0.0000812387,0.0,0.0030769231,0.0,0.0026109661,0.0,0.1995515695,0.0,0.0
1.4.2.11.9.1-8,MCGZ0090,"South Elevation GL.1-5 / Kalbau",7112,"CCGTD1_IPS",TT_Task,"58748",-,-,-,100,TK_Complete,25/02/2019,20/11/2018,23/03/2019,31/01/2019,"MCGZ0080 FF","MCGZ0080","MCGZ0100 FF,TH1.3 FS","MCGZ0100,TH1.3",186,209,190,219,43,48,44,51,48,,"CCGT D1_Integrated Programme Schedule;CIVILS;CONSTRUCTION;Power Island - Turbine Hall Area;Facade;Metal Cladding, Louvre, Glazing & Window",1,2,0.0000001656,0.0008138352,0.0002034588,26,0.0,0.0001503957,0.0068493151,0.0061538462,0.00025,0.0020887728,0.0006435006,0.0582959641,0.0,0.0283369572
1.4.2.11.9.1-9,MCGZ0100,"South Elevation GL.1-5 / Vapour barrier & ST clips",7112,"CCGTD1_IPS",TT_Task,"58748",-,-,-,100,TK_Complete,31/01/2019,02/01/2019,27/02/2019,28/02/2019,"MCGZ0090 FF","MCGZ0090","MCGZ0105 FF","MCGZ0105",183,215,187,223,42,50,43,52,46,,"CCGT D1_Integrated Programme Schedule;CIVILS;CONSTRUCTION;Power Island - Turbine Hall Area;Facade;Metal Cladding, Louvre, Glazing & Window",1,1,0.0000001656,0.0004069176,0.0004069176,27,0.0,0.000209244,0.0068493151,0.0030769231,0.00025,0.0010443864,0.0012870013,0.0605381166,0.0,0.0524499399
1.4.2.11.9.1-10,MCGZ0110,"West Elevation at GL.5 / Mullion & transom",7112,"CCGTD1_IPS",TT_Task,"58748",-,-,-,100,TK_Complete,26/01/2019,07/01/2019,12/02/2019,22/02/2019,"","","MCGZ0120 FF,MCGZ1110 FF,MCGZ2160 FS","MCGZ0120,MCGZ1110,MCGZ2160",182,216,184,223,42,50,43,52,45,,"CCGT D1_Integrated Programme Schedule;CIVILS;CONSTRUCTION;Power Island - Turbine Hall Area;Facade;Metal Cladding, Louvre, Glazing & Window",0,3,0.0,0.002034588,0.0,17,0.0,0.0000812387,0.0,0.0092307692,0.0,0.0052219321,0.0,0.0381165919,0.0,0.0
1.4.2.11.9.1-11,MCGZ0120,"West Elevation at GL.5 / Glazing panels",7112,"CCGTD1_IPS",TT_Task,"58748",-,-,-,100,TK_Complete,27/04/2019,20/02/2019,02/05/2019,28/02/2019,"MCGZ0110 FF","MCGZ0110","TH2.4 FS,THEL0015 SS","TH2.4,THEL0015",195,222,196,223,45,51,45,52,55,,"CCGT D1_Integrated Programme Schedule;CIVILS;CONSTRUCTION;Power Island - Turbine Hall Area;Facade;Metal Cladding, Louvre, Glazing & Window",1,1,0.0000000414,0.0002034588,0.0002034588,5,1.0,0.0000878884,0.0068493151,0.0030769231,0.0000625,0.0005221932,0.0006435006,0.0112107623,1.0,0.0027247074
1.4.2.11.9.1-12,MCGZ0140,"West Elevation at GL.5 / Subframe for aluminum features",7112,"CCGTD1_IPS",TT_Task,"58748",-,-,-,100,TK_Complete,02/05/2019,01/04/2019,20/05/2019,10/08/2019,"THRF5060 FF,THRF5070 FF","THRF5060,THRF5070","MCGZ0150 FF","MCGZ0150",196,228,198,247,45,53,46,57,57,,"CCGT D1_Integrated Programme Schedule;CIVILS;CONSTRUCTION;Power Island - Turbine Hall Area;Facade;Metal Cladding, Louvre, Glazing & Window",2,1,0.0000000828,0.0004069176,0.0004069176,18,0.0,0.0001574589,0.0136986301,0.0030769231,0.000125,0.0010443864,0.0012870013,0.0403587444,0.0,0.0312310808
1.4.2.11.9.1-13,MCGZ1010,"North Elevation GL.1-5 / Insulation & Kalzip",7112,"CCGTD1_IPS",TT_Task,"58748",-,-,-,100,TK_Complete,02/02/2019,21/01/2019,01/03/2019,29/01/2019,"MCGZ0030 FF","MCGZ0030","TH2.2 FS","TH2.2",183,218,187,219,42,50,43,51,46,,"CCGT D1_Integrated Programme Schedule;CIVILS;CONSTRUCTION;Power Island - Turbine Hall Area;Facade;Metal Cladding, Louvre, Glazing & Window",1,1,0.0000001242,0.0002034588,0.0006103764,27,1.0,0.0002593786,0.0068493151,0.0030769231,0.0001875,0.0005221932,0.0019305019,0.0605381166,1.0,0.0729924654
1.4.2.11.9.1-14,MCGZ1030,"North Elevation GL.5-10 / Kalbau",7112,"CCGTD1_IPS",TT_Task,"58748",-,-,-,100,TK_Complete,22/02/2019,17/12/2018,04/03/2019,19/01/2019,"MCGZ1015 FF","MCGZ1015","MCGZ2010 FS,TH3.1A FS","MCGZ2010,TH3.1A",186,213,187,218,43,49,43,50,47,,"CCGT D1_Integrated Programme Schedule;CIVILS;CONSTRUCTION;Power Island - Turbine Hall Area;Facade;Metal Cladding, Louvre, Glazing & Window",1,2,0.0000001656,0.0008138352,0.0002034588,10,0.0,0.0001503957,0.0068493151,0.0061538462,0.00025,0.0020887728,0.0006435006,0.0224215247,0.0,0.0283369572
1.4.2.11.9.1-15,MCGZ1040,"East Elevation at GL.1 / Aluminum featured claddings",7112,"CCGTD1_IPS",TT_Task,"58748",-,-,-,100,TK_Complete,01/08/2019,25/06/2019,19/08/2019,30/11/2019,"THRF5050 FF,THRF5040 FF,MCGZ0070 FF","THRF5050,THRF5040,MCGZ0070","THEL0012 FF,SW1.1 FF,THPD0020 FF","THEL0012,SW1.1,THPD0020",209,240,211,263,48,56,49,61,68,,"CCGT D1_Integrated Programme Schedule;CIVILS;CONSTRUCTION;Power Island - Turbine Hall Area;Facade;Metal Cladding, Louvre, Glazing & Window",3,2,0.000000414,0.0004069176,0.001017294,18,0.0,0.0003995247,0.0205479452,0.0061538462,0.000625,0.0010443864,0.0032175032,0.0403587444,0.0,0.1304170956
1.4.2.11.9.1-16,MCGZ1050,"East Elevation at GL.1 / Cleats, purlins, bridging, bracing, etc",7112,"CCGTD1_IPS",TT_Task,"58748",-,-,-,100,TK_Complete,26/11/2018,31/08/2018,12/01/2019,20/10/2018,"","","","",173,198,180,205,40,46,42,47,40,,"CCGT D1_Integrated Programme Schedule;CIVILS;CONSTRUCTION;Power Island - Turbine Hall Area;Facade;Metal Cladding, Louvre, Glazing & Window",0,0,0.0,0.0,0.0,47,0.8,0.0000812387,0.0,0.0,0.0,0.0,0.0,0.1053811659,0.8,0.0
1.4.2.11.9.1-17,MCGZ1060,"East Elevation at GL.1 / Subframe for wall claddings",7112,"CCGTD1_IPS",TT_Task,"58748",-,-,-,100,TK_Complete,26/01/2019,30/11/2018,01/02/2019,05/12/2018,"","","MCGZ1070 FS","MCGZ1070",182,211,183,211,42,49,42,49,45,,"CCGT D1_Integrated Programme Schedule;CIVILS;CONSTRUCTION;Power Island - Turbine Hall Area;Facade;Metal Cladding, Louvre, Glazing & Window",0,1,0.0,0.0014242116,0.0,6,1.0,0.0000812387,0.0,0.0030769231,0.0,0.0036553525,0.0,0.0134529148,1.0,0.0
1.4.2.11.9.1-18,MCGZ1070,"Eest Elevation at GL.1 / Remaining cleats, purlins, bracing, etc.",7112,"CCGTD1_IPS",TT_Task,"58748",-,-,-,100,TK_Complete,02/02/2019,03/12/2018,22/02/2019,09/12/2018,"MCGZ1060 FS","MCGZ1060","MCGZ2040 FF","MCGZ2040",183,211,186,212,42,49,43,49,46,,"CCGT D1_Integrated Programme Schedule;CIVILS;CONSTRUCTION;Power Island - Turbine Hall Area;Facade;Metal Cladding, Louvre, Glazing & Window",1,1,0.0000002484,0.0012207528,0.0002034588,20,1.0,0.0001503957,0.0068493151,0.0030769231,0.000375,0.0031331593,0.0006435006,0.0448430493,1.0,0.0283369572
1.4.2.11.9.1-19,MCGZ1080,"South Elevation GL.5-10 / Cleats, purlins, bridging, bracing, etc",7112,"CCGTD1_IPS",TT_Task,"58748",-,-,-,100,TK_Complete,26/01/2019,28/11/2018,15/03/2019,13/03/2019,"","","MCGZ1090 FF","MCGZ1090",182,210,189,225,42,49,44,52,45,,"CCGT D1_Integrated Programme Schedule;CIVILS;CONSTRUCTION;Power Island - Turbine Hall Area;Facade;Metal Cladding, Louvre, Glazing & Window",0,1,0.0,0.001017294,0.0,48,0.0,0.0000812387,0.0,0.0030769231,0.0,0.0026109661,0.0,0.1076233184,0.0,0.0
1.4.2.11.9.1-20,MCGZ1090,"South Elevation GL.5-10 / Kalbau",7112,"CCGTD1_IPS",TT_Task,"58748",-,-,-,100,TK_Complete,02/03/2019,07/01/2019,15/03/2019,14/03/2019,"MCGZ1080 FF","MCGZ1080","MCGZ1100 FF,TH3.4A FS","MCGZ1100,TH3.4A",187,216,189,225,43,50,44,52,48,,"CCGT D1_Integrated Programme Schedule;CIVILS;CONSTRUCTION;Power Island - Turbine Hall Area;Facade;Metal Cladding, Louvre, Glazing & Window",1,2,0.0000001656,0.0008138352,0.0002034588,13,0.0,0.0001503957,0.0068493151,0.0061538462,0.00025,0.0020887728,0.0006435006,0.0291479821,0.0,0.0283369572
1.4.2.11.9.1-21,MCGZ1100,"South Elevation GL.5-10 / Vapour barrier & ST clips",7112,"CCGTD1_IPS",TT_Task,"58748",-,-,-,100,TK_Complete,04/05/2019,08/03/2019,25/05/2019,31/03/2019,"MCGZ1090 FF","MCGZ1090","MCGZ1105 FF","MCGZ1105",196,225,199,228,45,52,46,53,57,,"CCGT D1_Integrated Programme Schedule;CIVILS;CONSTRUCTION;Power Island - Turbine Hall Area;Facade;Metal Cladding, Louvre, Glazing & Window",1,1,0.0000001656,0.0004069176,0.0004069176,21,0.4,0.000209244,0.0068493151,0.0030769231,0.00025,0.0010443864,0.0012870013,0.0470852018,0.4,0.0524499399
1.4.2.11.9.1-22,MCGZ1110,"West Elevation at GL.7 / Mullion & transom",7112,"CCGTD1_IPS",TT_Task,"58748",-,-,-,100,TK_Complete,01/04/2019,15/02/2019,04/05/2019,20/03/2019,"MCGZ0110 FF","MCGZ0110","MCGZ1120 FF,MCGZ2110 FF","MCGZ1120,MCGZ2110",191,222,196,226,44,51,45,52,51,,"CCGT D1_Integrated Programme Schedule;CIVILS;CONSTRUCTION;Power Island - Turbine Hall Area;Facade;Metal Cladding, Louvre, Glazing & Window",1,2,0.000000207,0.001017294,0.0002034588,33,1.0,0.0001251268,0.0068493151,0.0061538462,0.0003125,0.0026109661,0.0006435006,0.0739910314,1.0,0.017983069
1.4.2.11.9.1-23,MCGZ1120,"West Elevation at GL.7 / Glazing panels",7112,"CCGTD1_IPS",TT_Task,"58748",-,-,-,100,TK_Complete,29/04/2019,12/03/2019,11/05/2019,30/03/2019,"MCGZ1110 FF","MCGZ1110","TH3.3 FS","TH3.3",195,225,197,228,45,52,46,53,55,,"CCGT D1_Integrated Programme Schedule;CIVILS;CONSTRUCTION;Power Island - Turbine Hall Area;Facade;Metal Cladding, Louvre, Glazing & Window",1,1,0.0000000828,0.0002034588,0.0004069176,12,0.8,0.0001485038,0.0068493151,0.0030769231,0.000125,0.0005221932,0.0012870013,0.0269058296,0.8,0.0275617434
1.4.2.11.9.1-24,MCGZ1140,"West Elevation at GL.7 / Subframe for aluminum features",7112,"CCGTD1_IPS",TT_Task,"58748",-,-,-,100,TK_Complete,02/05/2019,01/04/2019,13/05/2019,12/10/2019,"MCGZ1126 FS","MCGZ1126","MCGZ1150 FF","MCGZ1150",196,228,197,256,45,53,46,59,57,,"CCGT D1_Integrated Programme Schedule;CIVILS;CONSTRUCTION;Power Island - Turbine Hall Area;Facade;Metal Cladding, Louvre, Glazing & Window",1,1,0.0000001656,0.0004069176,0.0004069176,11,0.0,0.0001125289,0.0068493151,0.0030769231,0.00025,0.0010443864,0.0012870013,0.0246636771,0.0,0.0128210964
1.4.2.11.9.1-25,MCGZ2010,"North Elevation GL.5-10 / Vapour barrier & ST clips",7112,"CCGTD1_IPS",TT_Task,"58748",-,-,-,100,TK_Complete,31/12/2018,31/12/2018,14/01/2019,28/03/2019,"MCGZ1030 FS","MCGZ1030","MCGZ2020 FF","MCGZ2020",178,215,180,227,41,50,42,53,43,,"CCGT D1_Integrated Programme Schedule;CIVILS;CONSTRUCTION;Power Island - Turbine Hall Area;Facade;Metal Cladding, Louvre, Glazing & Window",1,1,0.0000001656,0.0004069176,0.0004069176,14,0.0,0.000209244,0.0068493151,0.0030769231,0.00025,0.0010443864,0.0012870013,0.0313901345,0.0,0.0524499399
1.4.2.11.9.1-26,MCGZ2040,"East Elevation at GL.1 / Kalbau",7112,"CCGTD1_IPS",TT_Task,"58748",-,-,-,100,TK_Complete,26/11/2018,09/11/2018,29/12/2018,09/12/2018,"MCGZ1070 FF","MCGZ1070","MCGZ2050 FF","MCGZ2050",173,208,178,212,40,48,41,49,40,,"CCGT D1_Integrated Programme Schedule;CIVILS;CONSTRUCTION;Power Island - Turbine Hall Area;Facade;Metal Cladding, Louvre, Glazing & Window",1,1,0.000000414,0.001017294,0.0004069176,33,1.0,0.000209244,0.0068493151,0.0030769231,0.000625,0.0026109661,0.0012870013,0.0739910314,1.0,0.0524499399
1.4.2.11.9.1-27,MCGZ2050,"East Elevation at GL.1 / Vapour barrier & ST clips",7112,"CCGTD1_IPS",TT_Task,"58748",-,-,-,100,TK_Complete,01/04/2019,28/03/2019,25/04/2019,20/04/2019,"MCGZ2040 FF,MCGZ0050 FS","MCGZ2040,MCGZ0050","MCGZ2060 FF","MCGZ2060",191,227,195,231,44,53,45,53,51,,"CCGT D1_Integrated Programme Schedule;CIVILS;CONSTRUCTION;Power Island - Turbine Hall Area;Facade;Metal Cladding, Louvre, Glazing & Window",2,1,0.0000007453,0.0008138352,0.001017294,24,1.0,0.0003873839,0.0136986301,0.0030769231,0.001125,0.0020887728,0.0032175032,0.0538116592,1.0,0.1254424053
1.4.2.11.9.1-28,MCGZ2060,"East Elevation at GL.1 / Insulation & Kalzip",7112,"CCGTD1_IPS",TT_Task,"58748",-,-,-,100,TK_Complete,07/05/2019,20/04/2019,28/05/2019,30/04/2019,"MCGZ2050 FF","MCGZ2050","TH2.5 FS,THEL0012 FS","TH2.5,THEL0012",196,231,199,232,45,53,46,54,57,,"CCGT D1_Integrated Programme Schedule;CIVILS;CONSTRUCTION;Power Island - Turbine Hall Area;Facade;Metal Cladding, Louvre, Glazing & Window",1,2,0.0000006625,0.0006103764,0.0012207528,21,1.0,0.0004111082,0.0068493151,0.0061538462,0.001,0.0015665796,0.0038610039,0.0470852018,1.0,0.1351633958
1.4.2.11.9.1-29,MCGZ2070,"East Elevation at GL.1 / Louvres (incl' those at the Loft)",7112,"CCGTD1_IPS",TT_Task,"58748",-,-,-,100,TK_Complete,12/04/2019,16/01/2019,16/05/2019,01/03/2019,"","","","",193,217,198,224,45,50,46,52,53,,"CCGT D1_Integrated Programme Schedule;CIVILS;CONSTRUCTION;Power Island - Turbine Hall Area;Facade;Metal Cladding, Louvre, Glazing & Window",0,0,0.0,0.0,0.0,34,0.0,0.0000812387,0.0,0.0,0.0,0.0,0.0,0.0762331839,0.0,0.0
1.4.2.11.9.1-30,MCGZ2100,"South Elevation GL.1-10 / Aluminum features claddings",7112,"CCGTD1_IPS",TT_Task,"58748",-,-,-,100,TK_Complete,02/01/2020,24/09/2019,03/02/2020,21/10/2019,"","","SW1.1 FF","SW1.1",231,253,235,257,53,59,55,60,87,,"CCGT D1_Integrated Programme Schedule;CIVILS;CONSTRUCTION;Power Island - Turbine Hall Area;Facade;Metal Cladding, Louvre, Glazing & Window",0,1,0.0,0.0002034588,0.0,32,1.0,0.0000812387,0.0,0.0030769231,0.0,0.0005221932,0.0,0.0717488789,1.0,0.0
1.4.2.11.9.1-31,MCGZ2110,"West Elevation at GL.10 / Mullion & transom",7112,"CCGTD1_IPS",TT_Task,"58748",-,-,-,100,TK_Complete,01/04/2019,18/03/2019,08/04/2019,25/03/2019,"MCGZ1110 FF","MCGZ1110","MCGZ2120 FF","MCGZ2120",191,226,192,227,44,52,44,53,51,,"CCGT D1_Integrated Programme Schedule;CIVILS;CONSTRUCTION;Power Island - Turbine Hall Area;Facade;Metal Cladding, Louvre, Glazing & Window",1,1,0.0000001656,0.0004069176,0.0004069176,7,1.0,0.0001204767,0.0068493151,0.0030769231,0.00025,0.0010443864,0.0012870013,0.0156950673,1.0,0.0160776836
1.4.2.11.9.1-32,MCGZ2120,"West Elevation at GL.10 / Glazing panels",7112,"CCGTD1_IPS",TT_Task,"58748",-,-,-,100,TK_Complete,09/04/2019,25/03/2019,15/04/2019,30/03/2019,"MCGZ2110 FF","MCGZ2110","TH3.2 FS","TH3.2",192,227,193,228,45,53,45,53,53,,"CCGT D1_Integrated Programme Schedule;CIVILS;CONSTRUCTION;Power Island - Turbine Hall Area;Facade;Metal Cladding, Louvre, Glazing & Window",1,1,0.0000001242,0.0002034588,0.0006103764,6,1.0,0.0001837984,0.0068493151,0.0030769231,0.0001875,0.0005221932,0.0019305019,0.0134529148,1.0,0.0420236466
1.4.2.11.9.1-33,MCGZ2140,"West Elevation at GL.10 / Subframe for aluminum features",7112,"CCGTD1_IPS",TT_Task,"58748",-,-,-,100,TK_Complete,02/05/2019,25/03/2019,18/05/2019,15/08/2019,"THRF5110 FF,THRF5120 FF","THRF5110,THRF5120","MCGZ2150 FF","MCGZ2150",196,227,198,247,45,53,46,57,57,,"CCGT D1_Integrated Programme Schedule;CIVILS;CONSTRUCTION;Power Island - Turbine Hall Area;Facade;Metal Cladding, Louvre, Glazing & Window",2,1,0.0000000345,0.0002034588,0.0004069176,16,0.0,0.0001432705,0.0136986301,0.0030769231,0.0000520833,0.0005221932,0.0012870013,0.0358744395,0.0,0.0254173919
1.4.2.11.9.1-34,MCGZ0105,"South Elevation GL.1-5 / Insulation & Kalzip",7112,"CCGTD1_IPS",TT_Task,"58748",-,-,-,100,TK_Complete,15/04/2019,13/02/2019,02/05/2019,28/02/2019,"MCGZ0100 FF","MCGZ0100","TH2.6 FS","TH2.6",193,221,196,223,45,51,45,52,54,,"CCGT D1_Integrated Programme Schedule;CIVILS;CONSTRUCTION;Power Island - Turbine Hall Area;Facade;Metal Cladding, Louvre, Glazing & Window",1,1,0.0000001242,0.0002034588,0.0006103764,17,1.0,0.0002593786,0.0068493151,0.0030769231,0.0001875,0.0005221932,0.0019305019,0.0381165919,1.0,0.0729924654
1.4.2.11.9.1-35,MCGZ1015,"North Elevation GL.5-10 / Cleats, purlins, bridging, bracing, etc",7112,"CCGTD1_IPS",TT_Task,"58748",-,-,-,100,TK_Complete,26/01/2019,23/11/2018,04/03/2019,24/12/2018,"","","MCGZ1030 FF","MCGZ1030",182,210,187,214,42,49,43,50,45,,"CCGT D1_Integrated Programme Schedule;CIVILS;CONSTRUCTION;Power Island - Turbine Hall Area;Facade;Metal Cladding, Louvre, Glazing & Window",0,1,0.0,0.001017294,0.0,37,1.0,0.0000812387,0.0,0.0030769231,0.0,0.0026109661,0.0,0.0829596413,1.0,0.0
1.4.2.11.9.1-36,MCGZ1105,"South Elevation GL.5-10 / Insulation & Kalzip",7112,"CCGTD1_IPS",TT_Task,"58748",-,-,-,100,TK_Complete,20/05/2019,15/03/2019,01/06/2019,29/03/2019,"MCGZ1100 FF","MCGZ1100","TH3.4 FS","TH3.4",198,226,200,228,46,52,46,53,59,,"CCGT D1_Integrated Programme Schedule;CIVILS;CONSTRUCTION;Power Island - Turbine Hall Area;Facade;Metal Cladding, Louvre, Glazing & Window",1,1,0.0000001242,0.0002034588,0.0006103764,12,0.6,0.0002593786,0.0068493151,0.0030769231,0.0001875,0.0005221932,0.0019305019,0.0269058296,0.6,0.0729924654
1.4.2.11.9.1-37,MCGZ0150,"West Elevation at GL.5 / Aluminum featured claddings",7112,"CCGTD1_IPS",TT_Task,"58748",-,-,-,100,TK_Complete,16/08/2019,03/07/2019,28/08/2019,15/08/2019,"MCGZ0140 FF,THRF5100 FF,THRF5105 FF","MCGZ0140,THRF5100,THRF5105","THPD0020 FF,SW1.1 FF","THPD0020,SW1.1",211,241,213,247,49,56,49,57,70,,"CCGT D1_Integrated Programme Schedule;CIVILS;CONSTRUCTION;Power Island - Turbine Hall Area;Facade;Metal Cladding, Louvre, Glazing & Window",3,1,0.000000207,0.0002034588,0.001017294,12,0.0,0.0003969861,0.0205479452,0.0030769231,0.0003125,0.0005221932,0.0032175032,0.0269058296,0.0,0.1293769065
1.4.2.11.9.1-38,MCGZ1150,"West Elevation at GL.7 / Aluminum featured claddings",7112,"CCGTD1_IPS",TT_Task,"58748",-,-,-,100,TK_Complete,23/08/2019,15/07/2019,02/09/2019,25/10/2019,"THRF5090 FF,MCGZ1140 FF","THRF5090,MCGZ1140","TH3.3 FF","TH3.3",212,243,213,258,49,56,49,60,70,,"CCGT D1_Integrated Programme Schedule;CIVILS;CONSTRUCTION;Power Island - Turbine Hall Area;Facade;Metal Cladding, Louvre, Glazing & Window",2,1,0.000000207,0.0002034588,0.001017294,10,0.0,0.0003752183,0.0136986301,0.0030769231,0.0003125,0.0005221932,0.0032175032,0.0224215247,0.0,0.1204575818
1.4.2.11.9.1-39,MCGZ1160,"West Elevation at GL.7 / Cleats, purlins, bridging, bracing, etc",7112,"CCGTD1_IPS",TT_Task,"58748",-,-,-,100,TK_Complete,26/01/2019,29/11/2018,27/04/2019,28/03/2019,"","","MCGZ1170 FF","MCGZ1170",182,210,195,227,42,49,45,53,45,,"CCGT D1_Integrated Programme Schedule;CIVILS;CONSTRUCTION;Power Island - Turbine Hall Area;Facade;Metal Cladding, Louvre, Glazing & Window",0,1,0.0,0.001017294,0.0,91,0.0,0.0000812387,0.0,0.0030769231,0.0,0.0026109661,0.0,0.2040358744,0.0,0.0
1.4.2.11.9.1-40,MCGZ1170,"West Elevation at GL.7 / Kalbau",7112,"CCGTD1_IPS",TT_Task,"58748",-,-,-,100,TK_Complete,25/04/2019,21/03/2019,10/05/2019,31/03/2019,"MCGZ1160 FF","MCGZ1160","MCGZ1180 FF,TH3.3A FS","MCGZ1180,TH3.3A",195,226,197,228,45,52,46,53,55,,"CCGT D1_Integrated Programme Schedule;CIVILS;CONSTRUCTION;Power Island - Turbine Hall Area;Facade;Metal Cladding, Louvre, Glazing & Window",1,2,0.0000001656,0.0008138352,0.0002034588,15,1.0,0.0001503957,0.0068493151,0.0061538462,0.00025,0.0020887728,0.0006435006,0.033632287,1.0,0.0283369572
1.4.2.11.9.1-41,MCGZ1180,"West Elevation at GL.7 / Vapour barrier & ST clips",7112,"CCGTD1_IPS",TT_Task,"58748",-,-,-,100,TK_Complete,02/05/2019,01/04/2019,24/05/2019,03/10/2019,"MCGZ1170 FF,MCGZ1176 FS","MCGZ1170,MCGZ1176","MCGZ1190 FS","MCGZ1190",196,228,199,254,45,53,46,59,57,,"CCGT D1_Integrated Programme Schedule;CIVILS;CONSTRUCTION;Power Island - Turbine Hall Area;Facade;Metal Cladding, Louvre, Glazing & Window",2,1,0.000000414,0.0004069176,0.001017294,22,0.0,0.0002784011,0.0136986301,0.0030769231,0.000625,0.0010443864,0.0032175032,0.0493273543,0.0,0.0807868971
1.4.2.11.9.1-42,MCGZ1190,"West Elevation at GL.7 / Insulation & Kalzip",7112,"CCGTD1_IPS",TT_Task,"58748",-,-,-,100,TK_Complete,18/05/2019,29/04/2019,31/05/2019,10/10/2019,"MCGZ1180 FS","MCGZ1180","TH3.3 FS","TH3.3",198,232,200,255,46,54,46,59,59,,"CCGT D1_Integrated Programme Schedule;CIVILS;CONSTRUCTION;Power Island - Turbine Hall Area;Facade;Metal Cladding, Louvre, Glazing & Window",1,1,0.0000002484,0.0002034588,0.0012207528,13,0.0,0.0003182269,0.0068493151,0.0030769231,0.000375,0.0005221932,0.0038610039,0.0291479821,0.0,0.0971054481
1.4.2.11.9.1-43,MCGZ2150,"West Elevation at GL.10 / Aluminum featured claddings",7112,"CCGTD1_IPS",TT_Task,"58748",-,-,-,100,TK_Complete,16/08/2019,18/07/2019,29/08/2019,22/08/2019,"MCGZ2140 FF,THRF5130 FF,THRF5140 FF","MCGZ2140,THRF5130,THRF5140","THPD0020 FF","THPD0020",211,243,213,248,49,56,49,58,70,,"CCGT D1_Integrated Programme Schedule;CIVILS;CONSTRUCTION;Power Island - Turbine Hall Area;Facade;Metal Cladding, Louvre, Glazing & Window",3,0,0.0,0.0,0.001017294,13,0.0,0.0004064064,0.0205479452,0.0,0.0,0.0,0.0032175032,0.0291479821,0.0,0.1332368371
1.4.2.11.9.1-44,MCGZ2160,"West Elevation at GL.10 / Cleats, purlins, bridging, bracing, etc",7112,"CCGTD1_IPS",TT_Task,"58748",-,-,-,100,TK_Complete,01/06/2019,02/05/2019,15/06/2019,18/07/2019,"MCGZ0110 FS","MCGZ0110","MCGZ2170 FF,MCGZ2170 FS","MCGZ2170,MCGZ2170",200,232,202,243,46,54,47,56,61,,"CCGT D1_Integrated Programme Schedule;CIVILS;CONSTRUCTION;Power Island - Turbine Hall Area;Facade;Metal Cladding, Louvre, Glazing & Window",1,1,0.0000000414,0.0002034588,0.0002034588,14,0.0,0.0000998579,0.0068493151,0.0030769231,0.0000625,0.0005221932,0.0006435006,0.0313901345,0.0,0.0076291808
1.4.2.11.9.1-45,MCGZ2170,"West Elevation at GL.10 / Aluminum wall cladding",7112,"CCGTD1_IPS",TT_Task,"58748",-,-,-,100,TK_Complete,22/08/2019,23/05/2019,03/09/2019,31/10/2019,"MCGZ2160 FF,MCGZ2160 FS","MCGZ2160,MCGZ2160","","",212,235,213,258,49,55,49,60,70,,"CCGT D1_Integrated Programme Schedule;CIVILS;CONSTRUCTION;Power Island - Turbine Hall Area;Facade;Metal Cladding, Louvre, Glazing & Window",1,0,0.0,0.0,0.0004069176,12,0.0,0.0001662395,0.0068493151,0.0,0.0,0.0,0.0012870013,0.0269058296,0.0,0.0348289141
1.4.2.11.9.1-46,MCGZ2180,"West Elevation at GL.10 / Louvres to 1st floor rooms",7112,"CCGTD1_IPS",TT_Task,"58748",-,-,-,100,TK_Complete,02/05/2019,27/04/2019,14/05/2019,13/06/2019,"","","","",196,232,197,238,45,54,46,55,57,,"CCGT D1_Integrated Programme Schedule;CIVILS;CONSTRUCTION;Power Island - Turbine Hall Area;Facade;Metal Cladding, Louvre, Glazing & Window",0,0,0.0,0.0,0.0,12,0.0,0.0000812387,0.0,0.0,0.0,0.0,0.0,0.0269058296,0.0,0.0
1.4.2.11.9.1-47,MCGZ2190,"West Elevation at GL.10 / Louvres to ground floor rooms",7112,"CCGTD1_IPS",TT_Task,"58748",-,-,-,100,TK_Complete,15/05/2019,27/04/2019,24/05/2019,19/10/2019,"","","","",198,232,199,257,46,54,46,60,58,,"CCGT D1_Integrated Programme Schedule;CIVILS;CONSTRUCTION;Power Island - Turbine Hall Area;Facade;Metal Cladding, Louvre, Glazing & Window",0,0,0.0,0.0,0.0,9,0.0,0.0000812387,0.0,0.0,0.0,0.0,0.0,0.0201793722,0.0,0.0
1.4.2.11.9.1-48,MCGZ2020,"North Elevation GL.5-10 / Insulation & Kalzip",7112,"CCGTD1_IPS",TT_Task,"58748",-,-,-,100,TK_Complete,02/02/2019,08/01/2019,22/02/2019,01/04/2019,"MCGZ2010 FF","MCGZ2010","TH3.1 FS","TH3.1",183,216,186,228,42,50,43,53,46,,"CCGT D1_Integrated Programme Schedule;CIVILS;CONSTRUCTION;Power Island - Turbine Hall Area;Facade;Metal Cladding, Louvre, Glazing & Window",1,1,0.0000001242,0.0002034588,0.0006103764,20,0.0,0.0002593786,0.0068493151,0.0030769231,0.0001875,0.0005221932,0.0019305019,0.0448430493,0.0,0.0729924654
1.4.2.11.9.1-49,MCGZ2090,"North Elevation GL.1-10 / Aluminum features claddings",7112,"CCGTD1_IPS",TT_Task,"58748",-,-,-,100,TK_Complete,02/09/2019,16/08/2019,18/10/2019,16/11/2019,"","","SW1.1 FF","SW1.1",213,248,220,261,49,57,51,60,75,,"CCGT D1_Integrated Programme Schedule;CIVILS;CONSTRUCTION;Power Island - Turbine Hall Area;Facade;Metal Cladding, Louvre, Glazing & Window",0,1,0.0,0.0002034588,0.0,46,0.0,0.0000812387,0.0,0.0030769231,0.0,0.0005221932,0.0,0.1031390135,0.0,0.0
1.4.2.11.9.1-50,MCGZ2200,"North Elevation GL.1-10 / Louvres",7112,"CCGTD1_IPS",TT_Task,"58748",-,-,-,100,TK_Complete,02/05/2019,04/04/2019,13/07/2019,25/09/2019,"","","SW1.1 FF","SW1.1",196,228,206,253,45,53,48,59,57,,"CCGT D1_Integrated Programme Schedule;CIVILS;CONSTRUCTION;Power Island - Turbine Hall Area;Facade;Metal Cladding, Louvre, Glazing & Window",0,1,0.0,0.0002034588,0.0,72,0.0,0.0000812387,0.0,0.0030769231,0.0,0.0005221932,0.0,0.1614349776,0.0,0.0
1.4.2.11.9.1-51,MCGZ2210,"South Elevation GL.1-10 / Louvres",7112,"CCGTD1_IPS",TT_Task,"58748",-,-,-,100,TK_Complete,01/04/2019,11/03/2019,15/06/2019,20/04/2019,"","","SW1.1 FF","SW1.1",191,225,202,231,44,52,47,53,51,,"CCGT D1_Integrated Programme Schedule;CIVILS;CONSTRUCTION;Power Island - Turbine Hall Area;Facade;Metal Cladding, Louvre, Glazing & Window",0,1,0.0,0.0002034588,0.0,75,1.0,0.0000812387,0.0,0.0030769231,0.0,0.0005221932,0.0,0.168161435,1.0,0.0
1.4.2.11.9.1-52,LIFT1020,"Lift No.1 - Glazing panel to lift shaft",7112,"CCGTD1_IPS",TT_Task,"58748",-,-,-,100,TK_Complete,02/05/2019,27/03/2019,29/05/2019,15/05/2019,"GENSUB98 FS","GENSUB98","TH4.1 FF,LIFT1030 FS","TH4.1,LIFT1030",196,227,200,234,45,53,46,54,57,,"CCGT D1_Integrated Programme Schedule;CIVILS;CONSTRUCTION;Power Island - Turbine Hall Area;Facade;Metal Cladding, Louvre, Glazing & Window",1,2,0.0000003312,0.0008138352,0.0004069176,27,0.0,0.000209244,0.0068493151,0.0061538462,0.0005,0.0020887728,0.0012870013,0.0605381166,0.0,0.0524499399
1.4.2.11.9.1-53,DEF_WK11,"DW11 - Capping of all cladding openings required by / following the installation of all items of plant and equip (TBC)",7112,"CCGTD1_IPS",TT_Task,"58748",-,-,-,100,TK_Complete,01/06/2019,13/05/2019,15/08/2019,24/01/2020,"","","SW1.1 FF","SW1.1",200,234,211,271,46,54,49,63,61,,"CCGT D1_Integrated Programme Schedule;CIVILS;CONSTRUCTION;Power Island - Turbine Hall Area;Facade;Metal Cladding, Louvre, Glazing & Window",0,1,0.0,0.0002034588,0.0,75,0.0,0.0000812387,0.0,0.0030769231,0.0,0.0005221932,0.0,0.168161435,0.0,0.0
1.4.2.11.9.1-54,DEF_WK05,"DW05 - Construct Int.Structural Steel Members of Turbine Hall below +23.9 (GL.A-C/11)",7112,"CCGTD1_IPS",TT_Task,"58748",-,-,-,100,TK_Complete,01/08/2019,18/04/2019,30/08/2019,16/05/2019,"","","","",209,230,213,234,48,53,49,54,68,,"CCGT D1_Integrated Programme Schedule;CIVILS;CONSTRUCTION;Power Island - Turbine Hall Area;Facade;Metal Cladding, Louvre, Glazing & Window",0,0,0.0,0.0,0.0,29,1.0,0.0000812387,0.0,0.0,0.0,0.0,0.0,0.0650224215,1.0,0.0
1.4.2.11.9.1-55,MCGZ1122,"West Elevation at GL.7 / Access to Air Intake [EVENT063]",7112,"CCGTD1_IPS",TT_FinMile,"58748",-,-,-,100,TK_Complete,01/08/2019,19/07/2019,01/08/2019,19/07/2019,"","","","",209,244,209,244,48,56,48,56,68,,"CCGT D1_Integrated Programme Schedule;CIVILS;CONSTRUCTION;Power Island - Turbine Hall Area;Facade;Metal Cladding, Louvre, Glazing & Window",0,0,0.0,0.0,0.0,0,1.0,0.0000812387,0.0,0.0,0.0,0.0,0.0,0.0,1.0,0.0
1.4.2.11.9.1-56,MCGZ1124,"West Elevation at GL.7 / Erect PERI bridge over scaffold [EVENT063]",7112,"CCGTD1_IPS",TT_Task,"58748",-,-,-,100,TK_Complete,01/08/2019,20/07/2019,15/08/2019,03/08/2019,"","","MCGZ1126 FS","MCGZ1126",209,244,211,246,48,56,49,57,68,,"CCGT D1_Integrated Programme Schedule;CIVILS;CONSTRUCTION;Power Island - Turbine Hall Area;Facade;Metal Cladding, Louvre, Glazing & Window",0,1,0.0,0.0012207528,0.0,14,1.0,0.0000812387,0.0,0.0030769231,0.0,0.0031331593,0.0,0.0313901345,1.0,0.0
1.4.2.11.9.1-57,MCGZ1126,"West Elevation at GL.7 / Complete remaining glazing [EVENT063]",7112,"CCGTD1_IPS",TT_Task,"58748",-,-,-,100,TK_Complete,05/09/2019,05/08/2019,28/09/2019,28/08/2019,"MCGZ1124 FS","MCGZ1124","MCGZ1140 FS,THRF5085 FS","MCGZ1140,THRF5085",214,246,217,249,49,57,50,58,75,,"CCGT D1_Integrated Programme Schedule;CIVILS;CONSTRUCTION;Power Island - Turbine Hall Area;Facade;Metal Cladding, Louvre, Glazing & Window",1,2,0.000000207,0.001017294,0.0002034588,23,1.0,0.0001503957,0.0068493151,0.0061538462,0.0003125,0.0026109661,0.0006435006,0.0515695067,1.0,0.0283369572
1.4.2.11.9.1-58,MCGZ1172,"West Elevation at GL.7 / Vent pipe support frame handed over to KSS [EVENT / ROI]",7112,"CCGTD1_IPS",TT_Mile,"58748",-,-,-,100,TK_Complete,02/01/2020,05/09/2019,02/01/2020,05/09/2019,"","","MCGZ1174 FS","MCGZ1174",231,250,231,250,53,58,53,58,87,,"CCGT D1_Integrated Programme Schedule;CIVILS;CONSTRUCTION;Power Island - Turbine Hall Area;Facade;Metal Cladding, Louvre, Glazing & Window",0,1,0.0,0.001017294,0.0,0,1.0,0.0000812387,0.0,0.0030769231,0.0,0.0026109661,0.0,0.0,1.0,0.0
1.4.2.11.9.1-59,MCGZ1174,"West Elevation at GL.7 / KSS mounting vent pipe onto support frame [EVENT]",7112,"CCGTD1_IPS",TT_Task,"58748",-,-,-,100,TK_Complete,02/01/2020,05/09/2019,14/01/2020,27/09/2019,"MCGZ1172 FS","MCGZ1172","MCGZ1176 FS","MCGZ1176",231,250,232,254,53,58,54,59,87,,"CCGT D1_Integrated Programme Schedule;CIVILS;CONSTRUCTION;Power Island - Turbine Hall Area;Facade;Metal Cladding, Louvre, Glazing & Window",1,1,0.0000001656,0.0008138352,0.0002034588,12,0.0,0.0001503957,0.0068493151,0.0030769231,0.00025,0.0020887728,0.0006435006,0.0269058296,0.0,0.0283369572
1.4.2.11.9.1-60,MCGZ1176,"West Elevation at GL.7 / KSS place vent pipe and support frame in position, bolt fixing by LCAL [EVENT / ROI]",7112,"CCGTD1_IPS",TT_Task,"58748",-,-,-,100,TK_Complete,15/01/2020,28/09/2019,15/01/2020,28/09/2019,"MCGZ1174 FS","MCGZ1174","MCGZ1180 FS","MCGZ1180",233,254,233,254,54,59,54,59,88,,"CCGT D1_Integrated Programme Schedule;CIVILS;CONSTRUCTION;Power Island - Turbine Hall Area;Facade;Metal Cladding, Louvre, Glazing & Window",1,1,0.0000002484,0.0006103764,0.0004069176,0,1.0,0.0000812387,0.0068493151,0.0030769231,0.000375,0.0015665796,0.0012870013,0.0,1.0,0.0
1.4.2.11.9.1-61,MCGZ2078,"South Elevation GL.7-10 / KSS handover the area [EVENT]",7112,"CCGTD1_IPS",TT_FinMile,"58748",-,-,-,100,TK_Complete,01/01/2020,15/09/2019,01/01/2020,15/09/2019,"","","MCGZ2080 FF","MCGZ2080",231,252,231,252,53,58,53,58,86,,"CCGT D1_Integrated Programme Schedule;CIVILS;CONSTRUCTION;Power Island - Turbine Hall Area;Facade;Metal Cladding, Louvre, Glazing & Window",0,0,0.0,0.0,0.0,0,1.0,0.0000812387,0.0,0.0,0.0,0.0,0.0,0.0,1.0,0.0
1.4.2.11.9.2,58747,"Perimeter RC Walls",7112,"CCGTD1_IPS",WBS,"58746",,,,100,Complete,26/06/2018,12/04/2018,01/06/2019,24/11/2018,,,,,151,177,200,210,35,41,46,49,,,"CCGT D1_Integrated Programme Schedule;CIVILS;CONSTRUCTION;Power Island - Turbine Hall Area;Facade"
1.4.2.11.9.2-1,RCWL0010,"Perimeter RC Wall / North Elevation - GL.1 -5",7112,"CCGTD1_IPS",TT_Task,"58747",-,-,-,100,TK_Complete,30/10/2018,02/07/2018,09/11/2018,19/07/2018,"","","BDWK0110 FS","BDWK0110",169,189,171,191,39,44,39,44,38,,"CCGT D1_Integrated Programme Schedule;CIVILS;CONSTRUCTION;Power Island - Turbine Hall Area;Facade;Perimeter RC Walls",0,1,0.0,0.0004069176,0.0,10,0.4,0.0000812387,0.0,0.0030769231,0.0,0.0010443864,0.0,0.0224215247,0.4,0.0
1.4.2.11.9.2-2,RCWL0030,"Perimeter RC Wall / North Elevation - GL.7 -10",7112,"CCGTD1_IPS",TT_Task,"58747",-,-,-,100,TK_Complete,21/08/2018,12/04/2018,24/08/2018,12/05/2018,"","","RCWL0110 FS,BDWK0110 FS","RCWL0110,BDWK0110",159,177,160,182,37,41,37,42,35,,"CCGT D1_Integrated Programme Schedule;CIVILS;CONSTRUCTION;Power Island - Turbine Hall Area;Facade;Perimeter RC Walls",0,2,0.0,0.0014242116,0.0,3,0.0,0.0000812387,0.0,0.0061538462,0.0,0.0036553525,0.0,0.0067264574,0.0,0.0
1.4.2.11.9.2-3,RCWL0040,"Perimeter RC Wall / East Elevation - GL.A -C",7112,"CCGTD1_IPS",TT_Task,"58747",-,-,-,100,TK_Complete,12/07/2018,21/06/2018,16/07/2018,27/07/2018,"RCWL0050 FF","RCWL0050","RCWL0100 FS,BDWK0110 FS","RCWL0100,BDWK0110",154,187,154,193,35,43,36,45,32,,"CCGT D1_Integrated Programme Schedule;CIVILS;CONSTRUCTION;Power Island - Turbine Hall Area;Facade;Perimeter RC Walls",1,2,0.0000000828,0.0006103764,0.0006103764,4,0.0,0.0000863083,0.0068493151,0.0061538462,0.000125,0.0015665796,0.0019305019,0.0089686099,0.0,0.0020772402
1.4.2.11.9.2-4,RCWL0050,"Perimeter RC Wall / East Elevation - GL.C -E",7112,"CCGTD1_IPS",TT_Task,"58747",-,-,-,100,TK_Complete,07/07/2018,21/06/2018,11/07/2018,27/07/2018,"RCWL0060 FS","RCWL0060","RCWL0040 FF,BDWK0110 FS","RCWL0040,BDWK0110",153,187,154,193,35,43,35,45,32,,"CCGT D1_Integrated Programme Schedule;CIVILS;CONSTRUCTION;Power Island - Turbine Hall Area;Facade;Perimeter RC Walls",1,2,0.0000001242,0.0008138352,0.0004069176,4,0.0,0.0000863521,0.0068493151,0.0061538462,0.0001875,0.0020887728,0.0012870013,0.0089686099,0.0,0.0020952021
1.4.2.11.9.2-5,RCWL0060,"Perimeter RC Wall / East Elevation - GL.E -G",7112,"CCGTD1_IPS",TT_Task,"58747",-,-,-,100,TK_Complete,30/06/2018,02/06/2018,05/07/2018,16/06/2018,"RCWL0070 FS","RCWL0070","RCWL0050 FS,BDWK0110 FS","RCWL0050,BDWK0110",152,185,153,187,35,43,35,43,31,,"CCGT D1_Integrated Programme Schedule;CIVILS;CONSTRUCTION;Power Island - Turbine Hall Area;Facade;Perimeter RC Walls",1,2,0.0000000828,0.001017294,0.0002034588,5,0.2,0.0000870995,0.0068493151,0.0061538462,0.000125,0.0026109661,0.0006435006,0.0112107623,0.2,0.0024014371
1.4.2.11.9.2-6,RCWL0070,"Perimeter RC Wall / East Elevation - GL.G -K",7112,"CCGTD1_IPS",TT_Task,"58747",-,-,-,100,TK_Complete,26/06/2018,02/06/2018,29/06/2018,16/06/2018,"","","RCWL0090 FS,RCWL0060 FS,BDWK0110 FS","RCWL0090,RCWL0060,BDWK0110",151,185,152,187,35,43,35,43,31,,"CCGT D1_Integrated Programme Schedule;CIVILS;CONSTRUCTION;Power Island - Turbine Hall Area;Facade;Perimeter RC Walls",0,3,0.0,0.0014242116,0.0,3,0.0,0.0000812387,0.0,0.0092307692,0.0,0.0036553525,0.0,0.0067264574,0.0,0.0
1.4.2.11.9.2-7,RCWL0080,"Perimeter RC Wall / South Elevation - GL.10 -7",7112,"CCGTD1_IPS",TT_Task,"58747",-,-,-,100,TK_Complete,26/11/2018,19/10/2018,30/11/2018,28/10/2018,"RCWL0140 FS","RCWL0140","BDWK0110 FS","BDWK0110",173,205,174,206,40,47,40,48,40,,"CCGT D1_Integrated Programme Schedule;CIVILS;CONSTRUCTION;Power Island - Turbine Hall Area;Facade;Perimeter RC Walls",1,1,0.0,0.0004069176,0.0242115972,4,0.6,0.0000862456,0.0068493151,0.0030769231,0.0,0.0010443864,0.0765765766,0.0089686099,0.6,0.0020515655
1.4.2.11.9.2-8,RCWL0090,"Perimeter RC Wall / South Elevation - GL.7 -5 [Deferred Works]",7112,"CCGTD1_IPS",TT_Task,"58747",-,-,-,100,TK_Complete,26/11/2018,19/10/2018,26/11/2018,28/10/2018,"RCWL0070 FS","RCWL0070","RCWL0100 FS,BDWK0110 FS","RCWL0100,BDWK0110",173,205,173,206,40,47,40,48,40,,"CCGT D1_Integrated Programme Schedule;CIVILS;CONSTRUCTION;Power Island - Turbine Hall Area;Facade;Perimeter RC Walls",1,2,0.0000000414,0.0006103764,0.0002034588,0,0.2,0.0000812387,0.0068493151,0.0061538462,0.0000625,0.0015665796,0.0006435006,0.0,0.2,0.0
1.4.2.11.9.2-9,RCWL0100,"Perimeter RC Wall / South Elevation - GL.5 -2",7112,"CCGTD1_IPS",TT_Task,"58747",-,-,-,100,TK_Complete,27/08/2018,11/07/2018,31/08/2018,25/07/2018,"RCWL0090 FS,RCWL0040 FS","RCWL0090,RCWL0040","BDWK0110 FS","BDWK0110",160,190,161,192,37,44,37,44,35,,"CCGT D1_Integrated Programme Schedule;CIVILS;CONSTRUCTION;Power Island - Turbine Hall Area;Facade;Perimeter RC Walls",2,1,0.0,0.0004069176,0.001017294,4,0.0,0.0000910751,0.0136986301,0.0030769231,0.0,0.0010443864,0.0032175032,0.0089686099,0.0,0.0040304582
1.4.2.11.9.2-10,RCWL0110,"Perimeter RC Wall / West Elevation - GL.K -G",7112,"CCGTD1_IPS",TT_Task,"58747",-,-,-,100,TK_Complete,06/08/2018,12/04/2018,09/08/2018,12/05/2018,"RCWL0030 FS","RCWL0030","RCWL0120 FF,BDWK0110 FS","RCWL0120,BDWK0110",157,177,158,182,36,41,36,42,34,,"CCGT D1_Integrated Programme Schedule;CIVILS;CONSTRUCTION;Power Island - Turbine Hall Area;Facade;Perimeter RC Walls",1,2,0.0000001656,0.0012207528,0.0002034588,3,0.0,0.0000848786,0.0068493151,0.0061538462,0.00025,0.0031331593,0.0006435006,0.0067264574,0.0,0.0014914188
1.4.2.11.9.2-11,RCWL0120,"Perimeter RC Wall / West Elevation - GL.G -E",7112,"CCGTD1_IPS",TT_Task,"58747",-,-,-,100,TK_Complete,26/11/2018,20/10/2018,29/11/2018,24/11/2018,"RCWL0110 FF,THGF9110 FS","RCWL0110,THGF9110","RCWL0130 FS,BDWK0110 FS","RCWL0130,BDWK0110",173,205,174,210,40,47,40,49,40,,"CCGT D1_Integrated Programme Schedule;CIVILS;CONSTRUCTION;Power Island - Turbine Hall Area;Facade;Perimeter RC Walls",2,2,0.0000197497,0.001017294,0.0236012208,3,0.0,0.0001541986,0.0136986301,0.0061538462,0.0298125,0.0026109661,0.0746460746,0.0067264574,0.0,0.029895171
1.4.2.11.9.2-12,RCWL0130,"Perimeter RC Wall / West Elevation - GL.E -C",7112,"CCGTD1_IPS",TT_Task,"58747",-,-,-,100,TK_Complete,30/11/2018,20/10/2018,04/12/2018,04/11/2018,"RCWL0120 FS","RCWL0120","RCWL0140 FS,BDWK0110 FS","RCWL0140,BDWK0110",174,205,174,207,40,47,40,48,41,,"CCGT D1_Integrated Programme Schedule;CIVILS;CONSTRUCTION;Power Island - Turbine Hall Area;Facade;Perimeter RC Walls",1,2,0.0000096885,0.0008138352,0.0238046796,4,0.0,0.0000902899,0.0068493151,0.0061538462,0.014625,0.0020887728,0.0752895753,0.0089686099,0.0,0.0037086861
1.4.2.11.9.2-13,RCWL0140,"Perimeter RC Wall / West Elevation - GL.C -A",7112,"CCGTD1_IPS",TT_Task,"58747",-,-,-,100,TK_Complete,26/11/2018,19/10/2018,29/11/2018,28/10/2018,"RCWL0130 FS","RCWL0130","RCWL0080 FS,BDWK0110 FS","RCWL0080,BDWK0110",173,205,174,206,40,47,40,48,40,,"CCGT D1_Integrated Programme Schedule;CIVILS;CONSTRUCTION;Power Island - Turbine Hall Area;Facade;Perimeter RC Walls",1,2,0.0000048857,0.0006103764,0.0240081384,3,0.6,0.0000852841,0.0068493151,0.0061538462,0.007375,0.0015665796,0.0759330759,0.0067264574,0.6,0.0016576083
1.4.2.11.9.2-14,DEF_WK03,"DW03 - Construct Walls of Turbine Hall below +12.0(GL.K /5-7) after erection of Condensate Pipe Rack & associated equip",7112,"CCGTD1_IPS",TT_Task,"58747",-,-,-,100,TK_Complete,01/04/2019,07/11/2018,01/06/2019,14/11/2018,"","","","",191,207,200,208,44,48,46,48,51,,"CCGT D1_Integrated Programme Schedule;CIVILS;CONSTRUCTION;Power Island - Turbine Hall Area;Facade;Perimeter RC Walls",0,0,0.0,0.0,0.0,61,1.0,0.0000812387,0.0,0.0,0.0,0.0,0.0,0.1367713004,1.0,0.0
1.4.2.11.10,58741,"Roofing Cladding",7112,"CCGTD1_IPS",WBS,"58729",,,,100,Complete,06/06/2018,30/04/2018,21/02/2020,25/10/2019,,,,,149,180,238,258,34,42,55,60,,,"CCGT D1_Integrated Programme Schedule;CIVILS;CONSTRUCTION;Power Island - Turbine Hall Area"
1.4.2.11.10.1,58745,"Roof Gutter",7112,"CCGTD1_IPS",WBS,"58741",,,,100,Complete,01/04/2019,26/03/2019,02/07/2019,10/08/2019,,,,,191,227,204,247,44,53,47,57,,,"CCGT D1_Integrated Programme Schedule;CIVILS;CONSTRUCTION;Power Island - Turbine Hall Area;Roofing Cladding"
1.4.2.11.10.1-1,THRF5010,"East Elevation / GL.1, A-E / Gutter subframe",7112,"CCGTD1_IPS",TT_Task,"58745",-,-,-,100,TK_Complete,02/05/2019,04/04/2019,08/05/2019,14/05/2019,"","","THPD0020 FS,THRF5020 SS,THRF5040 FS,MCGZ2030 SS,MCGZ2080 SS,MCGZ0070 FF","THPD0020,THRF5020,THRF5040,MCGZ2030,MCGZ2080,MCGZ0070",196,228,197,234,45,53,45,54,57,,"CCGT D1_Integrated Programme Schedule;CIVILS;CONSTRUCTION;Power Island - Turbine Hall Area;Roofing Cladding;Roof Gutter",0,3,0.0,0.0014242116,0.0,6,0.0,0.0000812387,0.0,0.0092307692,0.0,0.0036553525,0.0,0.0134529148,0.0,0.0
1.4.2.11.10.1-2,THRF5020,"East Elevation / GL.1, E -K / Gutter subframe",7112,"CCGTD1_IPS",TT_Task,"58745",-,-,-,100,TK_Complete,09/05/2019,04/04/2019,15/05/2019,14/05/2019,"THRF5010 SS","THRF5010","THPD0020 FS,THRF5050 FS,MCGZ2030 SS,MCGZ2080 SS,MCGZ0070 FF","THPD0020,THRF5050,MCGZ2030,MCGZ2080,MCGZ0070",197,228,198,234,46,53,46,54,58,,"CCGT D1_Integrated Programme Schedule;CIVILS;CONSTRUCTION;Power Island - Turbine Hall Area;Roofing Cladding;Roof Gutter",1,2,0.0000000207,0.001017294,0.0002034588,6,0.0,0.0000918783,0.0068493151,0.0061538462,0.00003125,0.0026109661,0.0006435006,0.0134529148,0.0,0.0043595319
1.4.2.11.10.1-3,THRF5040,"East Elevation / GL. 1, A-E / Gutter Installation",7112,"CCGTD1_IPS",TT_Task,"58745",-,-,-,100,TK_Complete,19/06/2019,17/05/2019,02/07/2019,22/06/2019,"THRF5010 FS","THRF5010","THPD0020 FS,THRF5050 SS,MCGZ1040 FF","THPD0020,THRF5050,MCGZ1040",203,235,204,240,47,54,47,56,63,,"CCGT D1_Integrated Programme Schedule;CIVILS;CONSTRUCTION;Power Island - Turbine Hall Area;Roofing Cladding;Roof Gutter",1,2,0.0000000828,0.0008138352,0.0002034588,13,0.0,0.0001042911,0.0068493151,0.0061538462,0.000125,0.0020887728,0.0006435006,0.0291479821,0.0,0.0094456524
1.4.2.11.10.1-4,THRF5050,"East Elevation / GL. 1, E-K / Gutter Installation",7112,"CCGTD1_IPS",TT_Task,"58745",-,-,-,100,TK_Complete,19/06/2019,17/05/2019,02/07/2019,22/06/2019,"THRF5040 SS,THRF5020 FS","THRF5040,THRF5020","THPD0020 FS,MCGZ1040 FF","THPD0020,MCGZ1040",203,235,204,240,47,54,47,56,63,,"CCGT D1_Integrated Programme Schedule;CIVILS;CONSTRUCTION;Power Island - Turbine Hall Area;Roofing Cladding;Roof Gutter",2,1,0.0000000621,0.0006103764,0.0006103764,13,0.0,0.0001492764,0.0136986301,0.0030769231,0.00009375,0.0015665796,0.0019305019,0.0291479821,0.0,0.0278783087
1.4.2.11.10.1-5,THRF5060,"West Elevation / GL.5, A-E / Gutter subframe",7112,"CCGTD1_IPS",TT_Task,"58745",-,-,-,100,TK_Complete,01/04/2019,26/03/2019,15/04/2019,15/05/2019,"","","THRF5070 SS,MCGZ2030 SS,MCGZ2080 SS,THRF5100 FS,MCGZ0140 FF","THRF5070,MCGZ2030,MCGZ2080,THRF5100,MCGZ0140",191,227,193,234,44,53,45,54,51,,"CCGT D1_Integrated Programme Schedule;CIVILS;CONSTRUCTION;Power Island - Turbine Hall Area;Roofing Cladding;Roof Gutter",0,3,0.0,0.0012207528,0.0,14,0.0,0.0000812387,0.0,0.0092307692,0.0,0.0031331593,0.0,0.0313901345,0.0,0.0
1.4.2.11.10.1-6,THRF5070,"West Elevation / GL.5, E-K / Gutter subframe",7112,"CCGTD1_IPS",TT_Task,"58745",-,-,-,100,TK_Complete,02/05/2019,26/03/2019,14/05/2019,15/05/2019,"THRF5060 SS","THRF5060","THRF5105 FS,MCGZ2030 SS,MCGZ2080 SS,MCGZ0140 FF","THRF5105,MCGZ2030,MCGZ2080,MCGZ0140",196,227,197,234,45,53,46,54,57,,"CCGT D1_Integrated Programme Schedule;CIVILS;CONSTRUCTION;Power Island - Turbine Hall Area;Roofing Cladding;Roof Gutter",1,2,0.0000000207,0.0008138352,0.0002034588,12,0.0,0.0001000997,0.0068493151,0.0061538462,0.00003125,0.0020887728,0.0006435006,0.0269058296,0.0,0.0077282611
1.4.2.11.10.1-7,THRF5100,"West Elevation / GL.5, A-E / Gutter Installation",7112,"CCGTD1_IPS",TT_Task,"58745",-,-,-,100,TK_Complete,01/06/2019,11/05/2019,15/06/2019,10/08/2019,"THRF5060 FS","THRF5060","THRF5105 SS,MCGZ0150 FF","THRF5105,MCGZ0150",200,234,202,247,46,54,47,57,61,,"CCGT D1_Integrated Programme Schedule;CIVILS;CONSTRUCTION;Power Island - Turbine Hall Area;Roofing Cladding;Roof Gutter",1,2,0.0000000621,0.0006103764,0.0002034588,14,0.0,0.0001032432,0.0068493151,0.0061538462,0.00009375,0.0015665796,0.0006435006,0.0313901345,0.0,0.0090163046
1.4.2.11.10.1-8,THRF5105,"West Elevation / GL.5, E-K / Gutter Installation",7112,"CCGTD1_IPS",TT_Task,"58745",-,-,-,100,TK_Complete,01/06/2019,11/05/2019,15/06/2019,10/08/2019,"THRF5100 SS,THRF5070 FS","THRF5100,THRF5070","MCGZ0150 FF","MCGZ0150",200,234,202,247,46,54,47,57,61,,"CCGT D1_Integrated Programme Schedule;CIVILS;CONSTRUCTION;Power Island - Turbine Hall Area;Roofing Cladding;Roof Gutter",2,1,0.0000000414,0.0004069176,0.0006103764,14,0.0,0.0001658374,0.0136986301,0.0030769231,0.0000625,0.0010443864,0.0019305019,0.0313901345,0.0,0.0346641429
1.4.2.11.10.2,58744,"Grid Line 7 to 10",7112,"CCGTD1_IPS",WBS,"58741",,,,100,Complete,26/01/2019,15/11/2018,21/02/2020,21/10/2019,,,,,182,208,238,257,42,48,55,60,,,"CCGT D1_Integrated Programme Schedule;CIVILS;CONSTRUCTION;Power Island - Turbine Hall Area;Roofing Cladding"
1.4.2.11.10.2-1,THRF2410,"Turbine Hall GL.7-10 (Bay 1c) - embeds and subframe",7112,"CCGTD1_IPS",TT_Task,"58744",-,-,-,100,TK_Complete,01/09/2019,05/08/2019,07/09/2019,11/08/2019,"THSS2430 FS,EV058020 FS","THSS2430,EV058020","THRF2420 FS,THRF2420 FF","THRF2420,THRF2420",213,246,214,247,49,57,50,57,74,,"CCGT D1_Integrated Programme Schedule;CIVILS;CONSTRUCTION;Power Island - Turbine Hall Area;Roofing Cladding;Grid Line 7 to 10",2,1,0.0000012421,0.0008138352,0.0034587996,6,1.0,0.0001545871,0.0136986301,0.0030769231,0.001875,0.0020887728,0.0109395109,0.0134529148,1.0,0.0300543485
1.4.2.11.10.2-2,THRF2420,"Turbine Hall GL.7-10 (Bay 2c) - Embeds and subframe",7112,"CCGTD1_IPS",TT_Task,"58744",-,-,-,100,TK_Complete,07/09/2019,11/08/2019,13/09/2019,17/08/2019,"THRF2410 FS,THSS2320 FS,THRF2410 FF","THRF2410,THSS2320,THRF2410","THRF2470 FS","THRF2470",214,247,215,248,50,57,50,57,76,,"CCGT D1_Integrated Programme Schedule;CIVILS;CONSTRUCTION;Power Island - Turbine Hall Area;Roofing Cladding;Grid Line 7 to 10",2,1,0.0000150296,0.0006103764,0.0362156663,6,1.0,0.0004880934,0.0136986301,0.0030769231,0.0226875,0.0015665796,0.1145431145,0.0134529148,1.0,0.1667079395
1.4.2.11.10.2-3,THRF2430,"Turbine Hall GL.7-10 (Bay 3c) - Embeds and subframe",7112,"CCGTD1_IPS",TT_Task,"58744",-,-,-,100,TK_Complete,01/01/2020,09/09/2019,31/01/2020,04/10/2019,"THSS2330 FS,EV058020 FS","THSS2330,EV058020","THRF2480 FS","THRF2480",231,251,235,255,53,58,54,59,86,,"CCGT D1_Integrated Programme Schedule;CIVILS;CONSTRUCTION;Power Island - Turbine Hall Area;Roofing Cladding;Grid Line 7 to 10",2,1,0.0000070801,0.0004069176,0.0347914547,30,1.0,0.0002667029,0.0136986301,0.0030769231,0.0106875,0.0010443864,0.11003861,0.067264574,1.0,0.0759935925
1.4.2.11.10.2-4,THRF2440,"Turbine Hall GL.7-10 (Bay 4c) - Kalbau",7112,"CCGTD1_IPS",TT_Task,"58744",-,-,-,100,TK_Complete,06/03/2019,12/01/2019,22/03/2019,19/01/2019,"THSS2340 FS,THRF2400 FF","THSS2340,THRF2400","THRF2450 FF,EV058010 FF","THRF2450,EV058010",188,217,190,218,43,50,44,50,48,,"CCGT D1_Integrated Programme Schedule;CIVILS;CONSTRUCTION;Power Island - Turbine Hall Area;Roofing Cladding;Grid Line 7 to 10",2,2,0.00001445,0.0004069176,0.0356052899,16,1.0,0.0004975995,0.0136986301,0.0061538462,0.0218125,0.0010443864,0.1126126126,0.0358744395,1.0,0.1706030407
1.4.2.11.10.2-5,THRF2400,"Turbine Hall GL.7-10 - Cleats, purlins, bridging, etc",7112,"CCGTD1_IPS",TT_Task,"58744",-,-,-,100,TK_Complete,26/01/2019,15/11/2018,05/03/2019,19/01/2019,"THRF1410 FF","THRF1410","THRF2440 FF","THRF2440",182,208,187,218,42,48,43,50,45,,"CCGT D1_Integrated Programme Schedule;CIVILS;CONSTRUCTION;Power Island - Turbine Hall Area;Roofing Cladding;Grid Line 7 to 10",1,1,0.0000022358,0.0006103764,0.0038657172,38,0.0,0.0002028438,0.0068493151,0.0030769231,0.003375,0.0015665796,0.0122265122,0.0852017937,0.0,0.0498274429
1.4.2.11.10.2-6,THRF2450,"Turbine Hall GL.7-10 - Weathertight (i.e. Kalbau installed with temporary measures)",7112,"CCGTD1_IPS",TT_FinMile,"58744",-,-,-,100,TK_Complete,26/01/2019,19/01/2019,26/01/2019,19/01/2019,"THRF2440 FF","THRF2440","THRF2460 FS","THRF2460",182,218,182,218,42,50,42,50,45,,"CCGT D1_Integrated Programme Schedule;CIVILS;CONSTRUCTION;Power Island - Turbine Hall Area;Roofing Cladding;Grid Line 7 to 10",1,0,0.0,0.0,0.0358087487,0,1.0,0.0000812387,0.0068493151,0.0,0.0,0.0,0.1132561133,0.0,1.0,0.0
1.4.2.11.10.2-7,THRF2470,"Turbine Hall GL.7-10 / F-K - Kalbau/ VB/ ST clip/ Insul./ Kalzip",7112,"CCGTD1_IPS",TT_Task,"58744",-,-,-,100,TK_Complete,01/09/2019,14/08/2019,17/09/2019,25/09/2019,"THRF2420 FS","THRF2420","THRF2460 FF,THRF2480 FF","THRF2460,THRF2480",213,247,215,253,49,57,50,59,74,,"CCGT D1_Integrated Programme Schedule;CIVILS;CONSTRUCTION;Power Island - Turbine Hall Area;Roofing Cladding;Grid Line 7 to 10",1,1,0.0000077425,0.0004069176,0.0364191251,16,0.0,0.0004969867,0.0068493151,0.0030769231,0.0116875,0.0010443864,0.1151866152,0.0358744395,0.0,0.1703519269
1.4.2.11.10.2-8,THRF2480,"Turbine Hall GL.7-10 / A-F - Kalbau/ VB/ ST clip/ Insul./ Kalzip",7112,"CCGTD1_IPS",TT_Task,"58744",-,-,-,100,TK_Complete,01/02/2020,05/10/2019,21/02/2020,21/10/2019,"THRF2470 FF,EV058020 FS,THRF2430 FS","THRF2470,EV058020,THRF2430","TH3.6 FS,THRF2460 FF,THEL0015 FF","TH3.6,THRF2460,THEL0015",235,255,238,257,54,59,55,60,88,,"CCGT D1_Integrated Programme Schedule;CIVILS;CONSTRUCTION;Power Island - Turbine Hall Area;Roofing Cladding;Grid Line 7 to 10",3,1,0.0000075355,0.0002034588,0.0370295015,20,1.0,0.0007459025,0.0205479452,0.0030769231,0.011375,0.0005221932,0.1171171171,0.0448430493,1.0,0.2723447412
1.4.2.11.10.2-9,THRF5110,"West Elevation / GL.10, K -E / Gutter subframe",7112,"CCGTD1_IPS",TT_Task,"58744",-,-,-,100,TK_Complete,06/05/2019,28/03/2019,10/05/2019,09/05/2019,"","","MCGZ2030 SS,MCGZ2080 SS,THRF5130 FS,THRF5140 FS,MCGZ2140 FF","MCGZ2030,MCGZ2080,THRF5130,THRF5140,MCGZ2140",196,227,197,233,45,53,46,54,57,,"CCGT D1_Integrated Programme Schedule;CIVILS;CONSTRUCTION;Power Island - Turbine Hall Area;Roofing Cladding;Grid Line 7 to 10",0,3,0.0,0.0008138352,0.0,4,0.0,0.0000812387,0.0,0.0092307692,0.0,0.0020887728,0.0,0.0089686099,0.0,0.0
1.4.2.11.10.2-10,THRF5120,"West Elevation / GL. 10, E -A / Gutter subframe",7112,"CCGTD1_IPS",TT_Task,"58744",-,-,-,100,TK_Complete,08/04/2019,28/03/2019,12/04/2019,09/05/2019,"","","THRF5140 FS,MCGZ2030 SS,MCGZ2080 SS,MCGZ2140 FF","THRF5140,MCGZ2030,MCGZ2080,MCGZ2140",192,227,193,233,44,53,45,54,53,,"CCGT D1_Integrated Programme Schedule;CIVILS;CONSTRUCTION;Power Island - Turbine Hall Area;Roofing Cladding;Grid Line 7 to 10",0,2,0.0,0.0006103764,0.0,4,0.0,0.0000812387,0.0,0.0061538462,0.0,0.0015665796,0.0,0.0089686099,0.0,0.0
1.4.2.11.10.2-11,THRF5130,"West Elevation / GL. 10, K -E / Gutter Installation",7112,"CCGTD1_IPS",TT_Task,"58744",-,-,-,100,TK_Complete,13/09/2019,17/06/2019,27/09/2019,27/07/2019,"THRF5110 FS","THRF5110","MCGZ2150 FF","MCGZ2150",215,239,217,245,50,55,50,57,76,,"CCGT D1_Integrated Programme Schedule;CIVILS;CONSTRUCTION;Power Island - Turbine Hall Area;Roofing Cladding;Grid Line 7 to 10",1,1,0.0000000138,0.0002034588,0.0002034588,14,0.0,0.0001032432,0.0068493151,0.0030769231,0.0000208333,0.0005221932,0.0006435006,0.0313901345,0.0,0.0090163046
1.4.2.11.10.2-12,THRF5140,"West Elevation / GL. 10, E -A / Gutter Installation",7112,"CCGTD1_IPS",TT_Task,"58744",-,-,-,100,TK_Complete,13/09/2019,17/06/2019,27/09/2019,27/07/2019,"THRF5120 FS,THRF5110 FS","THRF5120,THRF5110","MCGZ2150 FF","MCGZ2150",215,239,217,245,50,55,50,57,76,,"CCGT D1_Integrated Programme Schedule;CIVILS;CONSTRUCTION;Power Island - Turbine Hall Area;Roofing Cladding;Grid Line 7 to 10",2,1,0.0000000345,0.0002034588,0.0004069176,14,0.0,0.0001355165,0.0136986301,0.0030769231,0.0000520833,0.0005221932,0.0012870013,0.0313901345,0.0,0.0222402179
1.4.2.11.10.2-13,EV058010,"Air Intake & Bus Duct Installation / M&E access available",7112,"CCGTD1_IPS",TT_FinMile,"58744",-,-,-,100,TK_Complete,26/01/2019,19/01/2019,26/01/2019,19/01/2019,"THSS2430 FF,THRF2440 FF","THSS2430,THRF2440","","",182,218,182,218,42,50,42,50,45,,"CCGT D1_Integrated Programme Schedule;CIVILS;CONSTRUCTION;Power Island - Turbine Hall Area;Roofing Cladding;Grid Line 7 to 10",2,0,0.0,0.0,0.0372329603,0,1.0,0.0000812387,0.0136986301,0.0,0.0,0.0,0.1177606178,0.0,1.0,0.0
1.4.2.11.10.2-14,EV058020,"Air Intake & Bus Duct Installation / Construction period",7112,"CCGTD1_IPS",TT_Task,"58744",-,-,-,100,TK_Complete,26/01/2019,20/01/2019,25/04/2019,08/09/2019,"","","THRF2410 FS,THAC0060 FS,THRF2480 FS,THRF2430 FS","THRF2410,THAC0060,THRF2480,THRF2430",182,218,195,251,42,50,45,58,45,,"CCGT D1_Integrated Programme Schedule;CIVILS;CONSTRUCTION;Power Island - Turbine Hall Area;Roofing Cladding;Grid Line 7 to 10",0,4,0.0,0.0016276704,0.0,89,0.0,0.0000812387,0.0,0.0123076923,0.0,0.0041775457,0.0,0.1995515695,0.0,0.0
1.4.2.11.10.2-15,THRF2452,"Turbine Hall GL.7-10 (Bay 4c) - Deferred Opening",7112,"CCGTD1_IPS",TT_Task,"58744",-,-,-,100,TK_Complete,01/08/2019,01/03/2019,16/08/2019,16/03/2019,"","","","",209,224,211,226,48,52,49,52,68,,"CCGT D1_Integrated Programme Schedule;CIVILS;CONSTRUCTION;Power Island - Turbine Hall Area;Roofing Cladding;Grid Line 7 to 10",0,0,0.0,0.0,0.0,15,1.0,0.0000812387,0.0,0.0,0.0,0.0,0.0,0.033632287,1.0,0.0
1.4.2.11.10.2-16,THRF2454,"Turbine Hall GL.7-10 (Bay 4c) - Kalzip",7112,"CCGTD1_IPS",TT_Task,"58744",-,-,-,100,TK_Complete,01/08/2019,06/03/2019,20/08/2019,25/03/2019,"","","","",209,224,211,227,48,52,49,53,68,,"CCGT D1_Integrated Programme Schedule;CIVILS;CONSTRUCTION;Power Island - Turbine Hall Area;Roofing Cladding;Grid Line 7 to 10",0,0,0.0,0.0,0.0,19,1.0,0.0000812387,0.0,0.0,0.0,0.0,0.0,0.0426008969,1.0,0.0
1.4.2.11.10.3,58743,"Grid Line 5 to 7",7112,"CCGTD1_IPS",WBS,"58741",,,,100,Complete,03/07/2018,25/06/2018,27/07/2019,25/10/2019,,,,,152,188,208,258,35,43,48,60,,,"CCGT D1_Integrated Programme Schedule;CIVILS;CONSTRUCTION;Power Island - Turbine Hall Area;Roofing Cladding"
1.4.2.11.10.3-1,THRF1420,"Turbine Hall GL5-7 /H-G1 (Bay 1b) - Kalbau",7112,"CCGTD1_IPS",TT_Task,"58743",-,-,-,100,TK_Complete,26/11/2018,10/11/2018,28/11/2018,12/12/2018,"THSS1320 FS,THSS1310 FS,THRF1410 FF","THSS1320,THSS1310,THRF1410","THRF1430 FS,THRF1460 FS","THRF1430,THRF1460",173,208,174,212,40,48,40,49,40,,"CCGT D1_Integrated Programme Schedule;CIVILS;CONSTRUCTION;Power Island - Turbine Hall Area;Roofing Cladding;Grid Line 5 to 7",3,2,0.0000308287,0.0024415056,0.0309257375,2,0.0,0.000261749,0.0205479452,0.0061538462,0.0465364583,0.0062663185,0.0978120978,0.0044843049,0.0,0.0739637417
1.4.2.11.10.3-2,THRF1430,"Turbine Hall GL5-7 /F-E (Bay 3b) - Kalbau",7112,"CCGTD1_IPS",TT_Task,"58743",-,-,-,100,TK_Complete,29/11/2018,12/11/2018,01/12/2018,14/11/2018,"THRF1420 FS,THSS1330 FS","THRF1420,THSS1330","THRF1440 FS","THRF1440",174,208,174,208,40,48,40,48,41,,"CCGT D1_Integrated Programme Schedule;CIVILS;CONSTRUCTION;Power Island - Turbine Hall Area;Roofing Cladding;Grid Line 5 to 7",2,1,0.000004218,0.0022380468,0.0319430315,2,1.0,0.000285493,0.0136986301,0.0030769231,0.0063671875,0.0057441253,0.101029601,0.0044843049,1.0,0.0836928008
1.4.2.11.10.3-3,THRF1440,"Turbine Hall GL5-7 /E-D (Bay 4b) - Kalbau",7112,"CCGTD1_IPS",TT_Task,"58743",-,-,-,100,TK_Complete,29/11/2018,14/11/2018,01/12/2018,16/11/2018,"THRF1430 FS,THSS1340 FS","THRF1430,THSS1340","THRF1450 FS","THRF1450",174,208,174,209,40,48,40,48,41,,"CCGT D1_Integrated Programme Schedule;CIVILS;CONSTRUCTION;Power Island - Turbine Hall Area;Roofing Cladding;Grid Line 5 to 7",2,1,0.0000031985,0.002034588,0.0329603255,2,1.0,0.0004423782,0.0136986301,0.0030769231,0.004828125,0.0052219321,0.1042471042,0.0044843049,1.0,0.147976213
1.4.2.11.10.3-4,THRF1450,"Turbine Hall GL5-7 /D-C (Bay 5b) - Kalbau",7112,"CCGTD1_IPS",TT_Task,"58743",-,-,-,100,TK_Complete,03/12/2018,16/11/2018,05/12/2018,19/11/2018,"THRF1440 FS,THSS1350 FS","THRF1440,THSS1350","THRF1460 FS","THRF1460",174,209,175,209,40,48,40,48,41,,"CCGT D1_Integrated Programme Schedule;CIVILS;CONSTRUCTION;Power Island - Turbine Hall Area;Roofing Cladding;Grid Line 5 to 7",2,1,0.0000026015,0.0018311292,0.0339776195,2,1.0,0.000576903,0.0136986301,0.0030769231,0.0039270833,0.0046997389,0.1074646075,0.0044843049,1.0,0.2030975143
1.4.2.11.10.3-5,THRF1460,"Turbine Hall GL5-7 /C-B (Bay 6b) - Kalbau (DEF_WK07 confirmed not required)",7112,"CCGTD1_IPS",TT_Task,"58743",-,-,-,100,TK_Complete,26/01/2019,13/12/2018,29/01/2019,15/12/2018,"THRF1450 FS,THSS1360 FS,THRF1420 FS","THRF1450,THSS1360,THRF1420","THRF1470 FS,DEF_WK07 SS,DEF_WK07 FF","THRF1470,DEF_WK07,DEF_WK07",182,212,182,213,42,49,42,49,45,,"CCGT D1_Integrated Programme Schedule;CIVILS;CONSTRUCTION;Power Island - Turbine Hall Area;Roofing Cladding;Grid Line 5 to 7",3,1,0.0000292519,0.0016276704,0.0349949135,3,1.0,0.0008403431,0.0205479452,0.0030769231,0.04415625,0.0041775457,0.1106821107,0.0067264574,1.0,0.3110415632
1.4.2.11.10.3-6,THRF1470,"Turbine Hall GL5-7 /B-A (Bay 7b) - Kalbau",7112,"CCGTD1_IPS",TT_Task,"58743",-,-,-,100,TK_Complete,29/01/2019,16/12/2018,31/01/2019,18/12/2018,"THRF1460 FS,THSS1370 FS","THRF1460,THSS1370","THEL0050 FF,THRF1480 FF","THEL0050,THRF1480",182,213,183,213,42,49,42,49,46,,"CCGT D1_Integrated Programme Schedule;CIVILS;CONSTRUCTION;Power Island - Turbine Hall Area;Roofing Cladding;Grid Line 5 to 7",2,2,0.0000492706,0.0014242116,0.0360122075,2,1.0,0.0010003989,0.0136986301,0.0061538462,0.074375,0.0036553525,0.1138996139,0.0044843049,1.0,0.3766241297
1.4.2.11.10.3-7,THRF1410,"Turbine Hall GL5-7 - Cleats, purlins, bridging, bracing, etc",7112,"CCGTD1_IPS",TT_Task,"58743",-,-,-,100,TK_Complete,03/07/2018,25/06/2018,23/08/2018,09/12/2018,"THSS1210 SS","THSS1210","THRF1420 FF,THRF2400 FF","THRF1420,THRF2400",152,188,160,212,35,43,37,49,32,,"CCGT D1_Integrated Programme Schedule;CIVILS;CONSTRUCTION;Power Island - Turbine Hall Area;Roofing Cladding;Grid Line 5 to 7",1,2,0.0000054308,0.0034587996,0.0036622584,51,0.0,0.0001503957,0.0068493151,0.0061538462,0.0081979167,0.0088772846,0.0115830116,0.1143497758,0.0,0.0283369572
1.4.2.11.10.3-8,THRF1480,"Turbine Hall GL5-7 - Weathertight (i.e. Kalbau installed with temporary measures)",7112,"CCGTD1_IPS",TT_FinMile,"58743",-,-,-,100,TK_Complete,31/01/2019,18/12/2018,31/01/2019,18/12/2018,"THRF1470 FF","THRF1470","THRF5150 FS,TH1.1 FS","THRF5150,TH1.1",183,213,183,213,42,49,42,49,46,,"CCGT D1_Integrated Programme Schedule;CIVILS;CONSTRUCTION;Power Island - Turbine Hall Area;Roofing Cladding;Grid Line 5 to 7",1,1,0.0000073699,0.0002034588,0.0362156663,0,1.0,0.0000812387,0.0068493151,0.0030769231,0.011125,0.0005221932,0.1145431145,0.0,1.0,0.0
1.4.2.11.10.3-9,THRF5160,"Turbine Hall GL.5-7 - Vapour barrier & ST clips",7112,"CCGTD1_IPS",TT_Task,"58743",-,-,-,100,TK_Complete,26/01/2019,23/12/2018,15/02/2019,12/01/2019,"THRF5150 FF","THRF5150","THRF5170 FF","THRF5170",182,214,185,217,42,50,43,50,45,,"CCGT D1_Integrated Programme Schedule;CIVILS;CONSTRUCTION;Power Island - Turbine Hall Area;Roofing Cladding;Grid Line 5 to 7",0,1,0.0,0.0004069176,0.0,20,1.0,0.0000812387,0.0,0.0030769231,0.0,0.0010443864,0.0,0.0448430493,1.0,0.0
1.4.2.11.10.3-10,THRF5170,"Turbine Hall GL.5-7 - Insulation & Kalzip",7112,"CCGTD1_IPS",TT_Task,"58743",-,-,-,100,TK_Complete,02/02/2019,04/01/2019,22/02/2019,15/01/2019,"THRF5150 FF,THRF5160 FF","THRF5150,THRF5160","TH3.5 FS","TH3.5",183,216,186,217,42,50,43,50,46,,"CCGT D1_Integrated Programme Schedule;CIVILS;CONSTRUCTION;Power Island - Turbine Hall Area;Roofing Cladding;Grid Line 5 to 7",1,1,0.0000000414,0.0002034588,0.0002034588,20,1.0,0.0001503957,0.0068493151,0.0030769231,0.0000625,0.0005221932,0.0006435006,0.0448430493,1.0,0.0283369572
1.4.2.11.10.3-11,THRF5085,"West Elevation / GL.7 / Gutter subframe",7112,"CCGTD1_IPS",TT_Task,"58743",-,-,-,100,TK_Complete,01/04/2019,22/03/2019,05/05/2019,04/09/2019,"MCGZ1126 FS","MCGZ1126","THRF5090 FS,MCGZ2080 FF,MCGZ2030 FF","THRF5090,MCGZ2080,MCGZ2030",191,227,196,250,44,52,45,58,51,,"CCGT D1_Integrated Programme Schedule;CIVILS;CONSTRUCTION;Power Island - Turbine Hall Area;Roofing Cladding;Grid Line 5 to 7",1,1,0.0000000828,0.0006103764,0.0004069176,34,0.0,0.0001779539,0.0068493151,0.0030769231,0.000125,0.0015665796,0.0012870013,0.0762331839,0.0,0.0396288435
1.4.2.11.10.3-12,THRF5090,"West Elevation / GL.7 / Gutter Installation",7112,"CCGTD1_IPS",TT_Task,"58743",-,-,-,100,TK_Complete,10/07/2019,15/05/2019,27/07/2019,25/10/2019,"THRF5085 FS","THRF5085","MCGZ1150 FF","MCGZ1150",206,234,208,258,48,54,48,60,66,,"CCGT D1_Integrated Programme Schedule;CIVILS;CONSTRUCTION;Power Island - Turbine Hall Area;Roofing Cladding;Grid Line 5 to 7",1,1,0.0000000828,0.0004069176,0.0006103764,17,0.0,0.0002327383,0.0068493151,0.0030769231,0.000125,0.0010443864,0.0019305019,0.0381165919,0.0,0.0620766745
1.4.2.11.10.3-13,DEF_WK08,"DW08 - Construct Roof of Turbine Hall(GL.F~G1 /5-7) after equip.installation on platfrom at +12.15",7112,"CCGTD1_IPS",TT_Task,"58743",-,-,-,100,TK_Complete,01/06/2019,04/05/2019,29/06/2019,09/09/2019,"","","SW1.1 FF","SW1.1",200,233,204,251,46,54,47,58,61,,"CCGT D1_Integrated Programme Schedule;CIVILS;CONSTRUCTION;Power Island - Turbine Hall Area;Roofing Cladding;Grid Line 5 to 7",0,1,0.0,0.0002034588,0.0,28,0.0,0.0000812387,0.0,0.0030769231,0.0,0.0005221932,0.0,0.0627802691,0.0,0.0
1.4.2.11.10.4,58742,"Grid Line 1 to 5",7112,"CCGTD1_IPS",WBS,"58741",,,,100,Complete,06/06/2018,30/04/2018,02/01/2020,14/06/2019,,,,,149,180,231,239,34,42,53,55,,,"CCGT D1_Integrated Programme Schedule;CIVILS;CONSTRUCTION;Power Island - Turbine Hall Area;Roofing Cladding"
1.4.2.11.10.4-1,THRF0510,"Turbine Hall GL.1-5 /H-G2/G1 (Bay 1a) - Kalbau",7112,"CCGTD1_IPS",TT_Task,"58742",-,-,-,100,TK_Complete,26/06/2018,07/06/2018,28/06/2018,26/06/2018,"THSS0310 FS,GENSUB16 FS,PROMA030 FS,THCL2BA8 FS","THSS0310,GENSUB16,PROMA030,THCL2BA8","THRF0520 FS,THRF0590 FF","THRF0520,THRF0590",151,185,152,188,35,43,35,44,31,,"CCGT D1_Integrated Programme Schedule;CIVILS;CONSTRUCTION;Power Island - Turbine Hall Area;Roofing Cladding;Grid Line 1 to 5",4,2,0.0000109927,0.0014242116,0.0215666328,2,0.0,0.0006328586,0.0273972603,0.0061538462,0.01659375,0.0036553525,0.0682110682,0.0044843049,0.0,0.2260252124
1.4.2.11.10.4-2,THRF0520,"Turbine Hall GL.1-5 /G2/G1-G (Bay 2a) - Kalbau",7112,"CCGTD1_IPS",TT_Task,"58742",-,-,-,100,TK_Complete,29/06/2018,20/06/2018,03/07/2018,29/06/2018,"THSS0420 FS,THRF0510 FS","THSS0420,THRF0510","THRF0530 FS,THRF0590 FF","THRF0530,THRF0590",152,187,152,189,35,43,35,44,31,,"CCGT D1_Integrated Programme Schedule;CIVILS;CONSTRUCTION;Power Island - Turbine Hall Area;Roofing Cladding;Grid Line 1 to 5",2,2,0.0000057137,0.0012207528,0.023397762,4,0.0,0.0008820154,0.0136986301,0.0061538462,0.008625,0.0031331593,0.074002574,0.0089686099,0.0,0.3281167348
1.4.2.11.10.4-3,THRF0530,"Turbine Hall GL.1-5 /G-F (Bay 3a) - Kalbau",7112,"CCGTD1_IPS",TT_Task,"58742",-,-,-,100,TK_Complete,31/07/2018,29/06/2018,02/08/2018,03/07/2018,"THSS0430 FS,THRF0520 FS","THSS0430,THRF0520","THRF0540 FS,THRF0590 FF","THRF0540,THRF0590",156,189,157,189,36,44,36,44,33,,"CCGT D1_Integrated Programme Schedule;CIVILS;CONSTRUCTION;Power Island - Turbine Hall Area;Roofing Cladding;Grid Line 1 to 5",2,2,0.0000040783,0.001017294,0.0248219736,2,1.0,0.0010964197,0.0136986301,0.0061538462,0.00615625,0.0026109661,0.0785070785,0.0044843049,1.0,0.4159684793
1.4.2.11.10.4-4,THRF0540,"Turbine Hall GL.1-5 /F-E (Bay 4a) - Kalbau",7112,"CCGTD1_IPS",TT_Task,"58742",-,-,-,100,TK_Complete,04/08/2018,03/07/2018,07/08/2018,07/07/2018,"THSS0440 FS,THRF0530 FS","THSS0440,THRF0530","THRF0550 FS,THRF0590 FF","THRF0550,THRF0590",157,189,157,190,36,44,36,44,34,,"CCGT D1_Integrated Programme Schedule;CIVILS;CONSTRUCTION;Power Island - Turbine Hall Area;Roofing Cladding;Grid Line 1 to 5",2,2,0.0000062986,0.0008138352,0.0252288911,3,1.0,0.001235006,0.0136986301,0.0061538462,0.0095078125,0.0020887728,0.0797940798,0.0067264574,1.0,0.4727539677
1.4.2.11.10.4-5,THRF0550,"Turbine Hall GL.1-5 /E-D (Bay 5a) - Kalbau",7112,"CCGTD1_IPS",TT_Task,"58742",-,-,-,100,TK_Complete,08/08/2018,07/07/2018,10/08/2018,09/07/2018,"THSS0450 FS,THRF0540 FS","THSS0450,THRF0540","THRF0560 FS,THRF0590 FF","THRF0560,THRF0590",158,190,158,190,36,44,36,44,34,,"CCGT D1_Integrated Programme Schedule;CIVILS;CONSTRUCTION;Power Island - Turbine Hall Area;Roofing Cladding;Grid Line 1 to 5",2,2,0.0000053549,0.0006103764,0.0274669379,2,1.0,0.0013563491,0.0136986301,0.0061538462,0.0080833333,0.0015665796,0.0868725869,0.0044843049,1.0,0.5224740485
1.4.2.11.10.4-6,THRF0560,"Turbine Hall GL.1-5 /D-C (Bay 6a) - Kalbau",7112,"CCGTD1_IPS",TT_Task,"58742",-,-,-,100,TK_Complete,11/08/2018,09/07/2018,14/08/2018,10/07/2018,"THSS0460 FS,THRF0550 FS","THSS0460,THRF0550","THRF0580 FS,THRF0590 FF,THRF0500 SF","THRF0580,THRF0590,THRF0500",158,190,158,190,36,44,37,44,34,,"CCGT D1_Integrated Programme Schedule;CIVILS;CONSTRUCTION;Power Island - Turbine Hall Area;Roofing Cladding;Grid Line 1 to 5",2,2,0.0000034917,0.0004069176,0.0309257375,3,1.0,0.0012931468,0.0136986301,0.0061538462,0.0052708333,0.0010443864,0.0978120978,0.0067264574,1.0,0.4965770167
1.4.2.11.10.4-7,THRF0570XX,"Turbine Hall GL.1-5 /C-B (Bay 7a) - Install standing seam roof cladding [Deferred Works]",7112,"CCGTD1_IPS",TT_Task,"58742",-,-,-,100,TK_Complete,02/01/2020,19/05/2018,02/01/2020,19/05/2018,"THSS0470XX FS","THSS0470XX","","",231,183,231,183,53,42,53,42,87,,"CCGT D1_Integrated Programme Schedule;CIVILS;CONSTRUCTION;Power Island - Turbine Hall Area;Roofing Cladding;Grid Line 1 to 5",1,0,0.0,0.0,0.0221770092,0,1.0,0.0000812387,0.0068493151,0.0,0.0,0.0,0.0701415701,0.0,1.0,0.0
1.4.2.11.10.4-8,THRF0580,"Turbine Hall GL.1-5 /B-A (Bay 8a) - Kalbau",7112,"CCGTD1_IPS",TT_Task,"58742",-,-,-,100,TK_Complete,19/07/2018,13/06/2018,21/07/2018,12/07/2018,"THSS0380 FS,THRF0560 FS","THSS0380,THRF0560","THRF0590 FF,THRF0500 SF,THSS0500 SF","THRF0590,THRF0500,THSS0500",155,186,155,190,36,43,36,44,32,,"CCGT D1_Integrated Programme Schedule;CIVILS;CONSTRUCTION;Power Island - Turbine Hall Area;Roofing Cladding;Grid Line 1 to 5",2,1,0.0000019598,0.0002034588,0.0327568667,2,0.0,0.0017801799,0.0136986301,0.0030769231,0.0029583333,0.0005221932,0.1036036036,0.0044843049,0.0,0.6961379358
1.4.2.11.10.4-9,THRF0590,"Turbine Hall GL.1-5 - Weathertight (i.e. Kalbau installed with temporary measures)",7112,"CCGTD1_IPS",TT_FinMile,"58742",-,-,-,100,TK_Complete,05/09/2018,05/08/2018,05/09/2018,05/08/2018,"THRF0510 FF,THRF0520 FF,THRF0530 FF,THRF0540 FF,THRF0550 FF,THRF0560 FF,THRF0580 FF,DEF_WK01 FF","THRF0510,THRF0520,THRF0530,THRF0540,THRF0550,THRF0560,THRF0580,DEF_WK01","THRF0600 FS","THRF0600",162,194,162,194,37,45,37,45,36,,"CCGT D1_Integrated Programme Schedule;CIVILS;CONSTRUCTION;Power Island - Turbine Hall Area;Roofing Cladding;Grid Line 1 to 5",8,0,0.0,0.0,0.0349949135,0,1.0,0.0000812387,0.0547945205,0.0,0.0,0.0,0.1106821107,0.0,1.0,0.0
1.4.2.11.10.4-10,THRF0610,"Turbine Hall GL.1-5 - Vapour barrier & ST clips",7112,"CCGTD1_IPS",TT_Task,"58742",-,-,-,100,TK_Complete,26/11/2018,27/10/2018,28/12/2018,14/11/2018,"","","THRF0600 FF","THRF0600",173,206,178,208,40,48,41,48,40,,"CCGT D1_Integrated Programme Schedule;CIVILS;CONSTRUCTION;Power Island - Turbine Hall Area;Roofing Cladding;Grid Line 1 to 5",0,0,0.0,0.0,0.0,32,1.0,0.0000812387,0.0,0.0,0.0,0.0,0.0,0.0717488789,1.0,0.0
1.4.2.11.10.4-11,THRF0620,"Turbine Hall GL.1-5 - Insulation & Kalzip",7112,"CCGTD1_IPS",TT_Task,"58742",-,-,-,100,TK_Complete,26/11/2018,23/11/2018,12/12/2018,29/12/2018,"","","THRF0600 FF,TH2.1 FS","THRF0600,TH2.1",173,210,176,215,40,49,41,50,40,,"CCGT D1_Integrated Programme Schedule;CIVILS;CONSTRUCTION;Power Island - Turbine Hall Area;Roofing Cladding;Grid Line 1 to 5",0,1,0.0,0.0002034588,0.0,16,0.0,0.0000812387,0.0,0.0030769231,0.0,0.0005221932,0.0,0.0358744395,0.0,0.0
1.4.2.11.10.4-12,THRF0630,"Turbine Hall GL.1-5 - Remaining works related to dog houses",7112,"CCGTD1_IPS",TT_Task,"58742",-,-,-,100,TK_Complete,02/05/2019,11/02/2019,22/05/2019,14/06/2019,"","","THRF0600 FF,TH2.3 FS,THEL0015 SS","THRF0600,TH2.3,THEL0015",196,221,199,239,45,51,46,55,57,,"CCGT D1_Integrated Programme Schedule;CIVILS;CONSTRUCTION;Power Island - Turbine Hall Area;Roofing Cladding;Grid Line 1 to 5",0,1,0.0,0.0002034588,0.0,20,0.0,0.0000812387,0.0,0.0030769231,0.0,0.0005221932,0.0,0.0448430493,0.0,0.0
1.4.2.11.10.4-13,DEF_WK01,"DW01 - Construct Roof of Turbine Hall (GL.B~C /1-5) after installation of main OH crane",7112,"CCGTD1_IPS",TT_Task,"58742",-,-,-,100,TK_Complete,26/07/2018,23/07/2018,31/08/2018,05/08/2018,"OHCN0008 FS","OHCN0008","THRF0590 FF","THRF0590",156,192,161,194,36,44,37,45,33,,"CCGT D1_Integrated Programme Schedule;CIVILS;CONSTRUCTION;Power Island - Turbine Hall Area;Roofing Cladding;Grid Line 1 to 5",1,1,0.0000003726,0.0002034588,0.023397762,36,1.0,0.0001243759,0.0068493151,0.0030769231,0.0005625,0.0005221932,0.074002574,0.0807174888,1.0,0.0176753686
1.4.2.11.11,58737,"Steel Structure",7112,"CCGTD1_IPS",WBS,"58729",,,,100,Complete,23/04/2018,29/03/2018,02/01/2020,29/12/2018,,,,,142,175,231,215,33,41,53,50,,,"CCGT D1_Integrated Programme Schedule;CIVILS;CONSTRUCTION;Power Island - Turbine Hall Area"
1.4.2.11.11.1,58740,"Grid Line 7 to 10",7112,"CCGTD1_IPS",WBS,"58737",,,,100,Complete,28/06/2018,21/06/2018,15/02/2019,29/12/2018,,,,,152,187,185,215,35,43,43,50,,,"CCGT D1_Integrated Programme Schedule;CIVILS;CONSTRUCTION;Power Island - Turbine Hall Area;Steel Structure"
1.4.2.11.11.1-1,THSS2010,"Turbine Hall GL.7-10 (Bay 1c) - Erect steel columns and bracing SC4 at GL.7-10 /K1-G1",7112,"CCGTD1_IPS",TT_Task,"58740",-,-,-,100,TK_Complete,28/06/2018,21/06/2018,30/06/2018,10/07/2018,"THGF7100 FS","THGF7100","THSS2020 FS,THSS2120 FS,THSS2110 FF","THSS2020,THSS2120,THSS2110",152,187,152,190,35,43,35,44,31,,"CCGT D1_Integrated Programme Schedule;CIVILS;CONSTRUCTION;Power Island - Turbine Hall Area;Steel Structure;Grid Line 7 to 10",1,3,0.0000102475,0.0089521872,0.0012207528,2,0.0,0.0001503957,0.0068493151,0.0092307692,0.01546875,0.0229765013,0.0038610039,0.0044843049,0.0,0.0283369572
1.4.2.11.11.1-2,THSS2020,"Turbine Hall GL.7-10 (Bay 2c) - Erect steel columns and bracing SC4 at GL.7-10 /G1-F",7112,"CCGTD1_IPS",TT_Task,"58740",-,-,-,100,TK_Complete,26/11/2018,28/09/2018,28/11/2018,02/10/2018,"THGF8100 FS,THSS2010 FS","THGF8100,THSS2010","THSS2030 FS,THSS2130 FS","THSS2030,THSS2130",173,202,174,202,40,47,40,47,40,,"CCGT D1_Integrated Programme Schedule;CIVILS;CONSTRUCTION;Power Island - Turbine Hall Area;Steel Structure;Grid Line 7 to 10",2,2,0.0000080117,0.003051882,0.0034587996,2,0.8,0.0001930642,0.0136986301,0.0061538462,0.01209375,0.0078328982,0.0109395109,0.0044843049,0.8,0.0458202705
1.4.2.11.11.1-3,THSS2030,"Turbine Hall GL.7-10 (Bay 3c) - Erect steel columns and bracing SC4 at GL.7-10 /F-C",7112,"CCGTD1_IPS",TT_Task,"58740",-,-,-,100,TK_Complete,26/11/2018,30/10/2018,28/11/2018,01/11/2018,"THGF9100 FS,THSS1090 FS,THSS2020 FS","THGF9100,THSS1090,THSS2020","THSS2040 FS","THSS2040",173,206,174,206,40,48,40,48,40,,"CCGT D1_Integrated Programme Schedule;CIVILS;CONSTRUCTION;Power Island - Turbine Hall Area;Steel Structure;Grid Line 7 to 10",3,1,0.0000688547,0.0028484232,0.0329603255,2,1.0,0.0002423703,0.0205479452,0.0030769231,0.1039375,0.007310705,0.1042471042,0.0044843049,1.0,0.0660233423
1.4.2.11.11.1-4,THSS2040,"Turbine Hall GL.7-10 (Bay 4c) - Erect steel columns and bracing SC4 at GL.7-10 /C-A",7112,"CCGTD1_IPS",TT_Task,"58740",-,-,-,100,TK_Complete,29/11/2018,06/11/2018,01/12/2018,08/11/2018,"THGF9100 FS,THSS2030 FS","THGF9100,THSS2030","THSS2340 FS,THSS2120 FS","THSS2340,THSS2120",174,207,174,207,40,48,40,48,41,,"CCGT D1_Integrated Programme Schedule;CIVILS;CONSTRUCTION;Power Island - Turbine Hall Area;Steel Structure;Grid Line 7 to 10",2,2,0.0000796404,0.0026449644,0.0331637843,2,1.0,0.0003221499,0.0136986301,0.0061538462,0.12021875,0.0067885117,0.1048906049,0.0044843049,1.0,0.0987129181
1.4.2.11.11.1-5,THSS2110,"Turbine Hall GL.7-10 (Bay 1c) - Install steel main and secondary beams at level +10.8",7112,"CCGTD1_IPS",TT_Task,"58740",-,-,-,100,TK_Complete,03/07/2018,25/06/2018,05/07/2018,12/07/2018,"THSS2010 FF","THSS2010","THSS2120 FS,THSS2310 FF","THSS2120,THSS2310",152,188,153,190,35,43,35,44,32,,"CCGT D1_Integrated Programme Schedule;CIVILS;CONSTRUCTION;Power Island - Turbine Hall Area;Steel Structure;Grid Line 7 to 10",1,2,0.0000086534,0.008138352,0.0014242116,2,0.0,0.0001239072,0.0068493151,0.0061538462,0.0130625,0.0208877285,0.0045045045,0.0044843049,0.0,0.0174833133
1.4.2.11.11.1-6,THSS2120,"Turbine Hall GL.7-10 (Bay 2c) - Install steel main and secondary beams at to level +10.8",7112,"CCGTD1_IPS",TT_Task,"58740",-,-,-,100,TK_Complete,06/12/2018,03/10/2018,08/12/2018,05/10/2018,"THSS2110 FS,THSS2010 FS,THSS2040 FS","THSS2110,THSS2010,THSS2040","THSS2130 FS","THSS2130",175,202,175,203,40,47,40,47,42,,"CCGT D1_Integrated Programme Schedule;CIVILS;CONSTRUCTION;Power Island - Turbine Hall Area;Steel Structure;Grid Line 7 to 10",3,1,0.0000489601,0.0024415056,0.0335707019,2,1.0,0.0002294159,0.0205479452,0.0030769231,0.07390625,0.0062663185,0.1061776062,0.0044843049,1.0,0.0607153198
1.4.2.11.11.1-7,THSS2130,"Turbine Hall GL.7-10 (Bay 3c) - Install steel main and secondary beams at to level +10.8",7112,"CCGTD1_IPS",TT_Task,"58740",-,-,-,100,TK_Complete,26/11/2018,02/11/2018,28/11/2018,05/11/2018,"THSS2120 FS,THSS2020 FS","THSS2120,THSS2020","THSS2320 FS","THSS2320",173,207,174,207,40,48,40,48,40,,"CCGT D1_Integrated Programme Schedule;CIVILS;CONSTRUCTION;Power Island - Turbine Hall Area;Steel Structure;Grid Line 7 to 10",2,1,0.0000471176,0.0022380468,0.0337741607,2,0.8,0.0003587755,0.0136986301,0.0030769231,0.071125,0.0057441253,0.1068211068,0.0044843049,0.8,0.1137201675
1.4.2.11.11.1-8,THSS2210,"Turbine Hall GL.7-10 (Bay 1c) - Construct floor slab at level +10.8",7112,"CCGTD1_IPS",TT_Task,"58740",-,-,-,100,TK_Complete,27/08/2018,23/07/2018,29/08/2018,06/09/2018,"THSS2310 FS","THSS2310","THSS2220 FS,THSS2230 FS,THSS2240 FF,BDWK0050 FS","THSS2220,THSS2230,THSS2240,BDWK0050",160,192,161,198,37,44,37,46,35,,"CCGT D1_Integrated Programme Schedule;CIVILS;CONSTRUCTION;Power Island - Turbine Hall Area;Steel Structure;Grid Line 7 to 10",1,4,0.0000093159,0.006103764,0.0018311292,2,0.0,0.0001302358,0.0068493151,0.0123076923,0.0140625,0.0156657963,0.0057915058,0.0044843049,0.0,0.0200764646
1.4.2.11.11.1-9,THSS2220,"Turbine Hall GL.7-10 (Bay 2c) - Construct floor slab at to level +10.8",7112,"CCGTD1_IPS",TT_Task,"58740",-,-,-,100,TK_Complete,26/11/2018,02/11/2018,28/11/2018,18/11/2018,"THSS2210 FS","THSS2210","THSS2230 FS,THSS2240 FF","THSS2230,THSS2240",173,207,174,209,40,48,40,48,40,,"CCGT D1_Integrated Programme Schedule;CIVILS;CONSTRUCTION;Power Island - Turbine Hall Area;Steel Structure;Grid Line 7 to 10",1,2,0.0,0.003051882,0.002034588,2,0.0,0.0000853456,0.0068493151,0.0061538462,0.0,0.0078328982,0.0064350064,0.0044843049,0.0,0.0016827742
1.4.2.11.11.1-10,THSS2230,"Turbine Hall GL.7-10 (Bay 3c) - Construct floor slab at  level +10.8",7112,"CCGTD1_IPS",TT_Task,"58740",-,-,-,100,TK_Complete,26/01/2019,28/11/2018,13/02/2019,14/12/2018,"THSS2220 FS,THSS2210 FS","THSS2220,THSS2210","THSS2240 FF,THSS2410 FS","THSS2240,THSS2410",182,210,185,213,42,49,43,49,45,,"CCGT D1_Integrated Programme Schedule;CIVILS;CONSTRUCTION;Power Island - Turbine Hall Area;Steel Structure;Grid Line 7 to 10",2,2,0.0000036435,0.0028484232,0.0022380468,18,1.0,0.000190854,0.0136986301,0.0061538462,0.0055,0.007310705,0.0070785071,0.0403587444,1.0,0.0449146448
1.4.2.11.11.1-11,THSS2310,"Turbine Hall GL.7-10 (Bay 1c) - Install steel beams and bracing at level +14.85",7112,"CCGTD1_IPS",TT_Task,"58740",-,-,-,100,TK_Complete,26/07/2018,29/06/2018,08/08/2018,14/07/2018,"THSS2110 FF","THSS2110","THSS2320 FS,THSS2320 FF,THSS2210 FS","THSS2320,THSS2320,THSS2210",156,189,158,191,36,44,36,44,33,,"CCGT D1_Integrated Programme Schedule;CIVILS;CONSTRUCTION;Power Island - Turbine Hall Area;Steel Structure;Grid Line 7 to 10",1,2,0.0000098955,0.0075279756,0.0016276704,13,0.8,0.0001726587,0.0068493151,0.0061538462,0.0149375,0.0193211488,0.0051480051,0.0291479821,0.8,0.0374591764
1.4.2.11.11.1-12,THSS2320,"Turbine Hall GL.7-10 (Bay 2c) - Install steel beams and bracing at level +14.85",7112,"CCGTD1_IPS",TT_Task,"58740",-,-,-,100,TK_Complete,13/12/2018,06/10/2018,17/12/2018,10/10/2018,"THSS2310 FS,THSS2310 FF,THSS2130 FS","THSS2310,THSS2310,THSS2130","THSS2330 FS,THSS2330 FF,THRF2420 FS,THSS2500 FS","THSS2330,THSS2330,THRF2420,THSS2500",176,203,176,203,41,47,41,47,42,,"CCGT D1_Integrated Programme Schedule;CIVILS;CONSTRUCTION;Power Island - Turbine Hall Area;Steel Structure;Grid Line 7 to 10",2,2,0.0000423562,0.002034588,0.0341810783,4,1.0,0.0004847789,0.0136986301,0.0061538462,0.0639375,0.0052219321,0.1081081081,0.0089686099,1.0,0.165349821
1.4.2.11.11.1-13,THSS2330,"Turbine Hall GL.7-10 (Bay 3c) - Install steel beams and bracing at level +14.85",7112,"CCGTD1_IPS",TT_Task,"58740",-,-,-,100,TK_Complete,26/11/2018,09/11/2018,29/11/2018,13/11/2018,"THSS2320 FS,THSS2320 FF","THSS2320,THSS2320","THSS2340 FS,THRF2430 FS","THSS2340,THRF2430",173,208,174,208,40,48,40,48,40,,"CCGT D1_Integrated Programme Schedule;CIVILS;CONSTRUCTION;Power Island - Turbine Hall Area;Steel Structure;Grid Line 7 to 10",1,2,0.0000147812,0.0014242116,0.0343845371,3,1.0,0.0002188801,0.0068493151,0.0061538462,0.0223125,0.0036553525,0.1087516088,0.0067264574,1.0,0.0563983033
1.4.2.11.11.1-14,THSS2340,"Turbine Hall GL.7-10 (Bay 4c) - Install steel beams and bracing at level +14.85",7112,"CCGTD1_IPS",TT_Task,"58740",-,-,-,100,TK_Complete,30/11/2018,14/11/2018,04/12/2018,19/11/2018,"THSS2330 FS,THSS2040 FS","THSS2330,THSS2040","THRF2440 FS,THSS2500 FF","THRF2440,THSS2500",174,208,174,209,40,48,40,48,41,,"CCGT D1_Integrated Programme Schedule;CIVILS;CONSTRUCTION;Power Island - Turbine Hall Area;Steel Structure;Grid Line 7 to 10",2,1,0.0000192114,0.0006103764,0.0345879959,4,1.0,0.0002860613,0.0136986301,0.0030769231,0.029,0.0015665796,0.1093951094,0.0089686099,1.0,0.0839256641
1.4.2.11.11.1-15,THSS2240,"Turbine Hall GL.7-10 - Complete floor slab at level +10.8",7112,"CCGTD1_IPS",TT_FinMile,"58740",-,-,-,100,TK_Complete,13/02/2019,14/12/2018,13/02/2019,14/12/2018,"THSS2210 FF,THSS2220 FF,THSS2230 FF","THSS2210,THSS2220,THSS2230","BDWK0020 FS","BDWK0020",185,213,185,213,43,49,43,49,47,,"CCGT D1_Integrated Programme Schedule;CIVILS;CONSTRUCTION;Power Island - Turbine Hall Area;Steel Structure;Grid Line 7 to 10",3,1,0.0000004968,0.0002034588,0.0024415056,0,1.0,0.0000812387,0.0205479452,0.0030769231,0.00075,0.0005221932,0.0077220077,0.0,1.0,0.0
1.4.2.11.11.1-16,THSS2400,"Turbine Hall GL.7-10 (Bay 1c) - Construct roof slab at level +14.85",7112,"CCGTD1_IPS",TT_Task,"58740",-,-,-,100,TK_Complete,26/11/2018,27/09/2018,18/12/2018,23/10/2018,"","","THSS2430 FF,BDWK0060 FS","THSS2430,BDWK0060",173,201,176,205,40,47,41,47,40,,"CCGT D1_Integrated Programme Schedule;CIVILS;CONSTRUCTION;Power Island - Turbine Hall Area;Steel Structure;Grid Line 7 to 10",0,2,0.0,0.0028484232,0.0,22,1.0,0.0000812387,0.0,0.0061538462,0.0,0.007310705,0.0,0.0493273543,1.0,0.0
1.4.2.11.11.1-17,THSS2410,"Turbine Hall GL.7-10 (Bay 2c) - Construct roof slab at level +14.85",7112,"CCGTD1_IPS",TT_Task,"58740",-,-,-,100,TK_Complete,26/01/2019,24/11/2018,13/02/2019,14/12/2018,"THSS2230 FS","THSS2230","THSS2430 FF,THSS2420 FF","THSS2430,THSS2420",182,210,185,213,42,49,43,49,45,,"CCGT D1_Integrated Programme Schedule;CIVILS;CONSTRUCTION;Power Island - Turbine Hall Area;Steel Structure;Grid Line 7 to 10",1,2,0.0000036435,0.0022380468,0.0024415056,18,0.6,0.0002436929,0.0068493151,0.0061538462,0.0055,0.0057441253,0.0077220077,0.0403587444,0.6,0.0665652873
1.4.2.11.11.1-18,THSS2420,"Turbine Hall GL.7-10 (Bay 3c) - Construct roof slab at level +14.85",7112,"CCGTD1_IPS",TT_Task,"58740",-,-,-,100,TK_Complete,26/01/2019,16/12/2018,15/02/2019,29/12/2018,"THSS2410 FF","THSS2410","THSS2430 FF,BDWK0070 FS","THSS2430,BDWK0070",182,213,185,215,42,49,43,50,45,,"CCGT D1_Integrated Programme Schedule;CIVILS;CONSTRUCTION;Power Island - Turbine Hall Area;Steel Structure;Grid Line 7 to 10",1,2,0.0000010765,0.002034588,0.0026449644,20,1.0,0.0002887347,0.0068493151,0.0061538462,0.001625,0.0052219321,0.0083655084,0.0448430493,1.0,0.0850210705
1.4.2.11.11.1-19,THSS2430,"Turbine Hall GL.7-10 - Complete roof slab at level +14.85",7112,"CCGTD1_IPS",TT_FinMile,"58740",-,-,-,100,TK_Complete,26/01/2019,29/12/2018,26/01/2019,29/12/2018,"THSS2400 FF,THSS2410 FF,THSS2420 FF","THSS2400,THSS2410,THSS2420","TH1.2 FS,THRF2410 FS,EV058010 FF","TH1.2,THRF2410,EV058010",182,215,182,215,42,50,42,50,45,,"CCGT D1_Integrated Programme Schedule;CIVILS;CONSTRUCTION;Power Island - Turbine Hall Area;Steel Structure;Grid Line 7 to 10",3,3,0.0000025256,0.0014242116,0.003051882,0,1.0,0.0000812387,0.0205479452,0.0092307692,0.0038125,0.0036553525,0.0096525097,0.0,1.0,0.0
1.4.2.11.11.2,58739,"Grid Line 5 to 7",7112,"CCGTD1_IPS",WBS,"58737",,,,100,Complete,26/06/2018,11/06/2018,15/12/2018,03/11/2018,,,,,151,186,176,207,35,43,41,48,,,"CCGT D1_Integrated Programme Schedule;CIVILS;CONSTRUCTION;Power Island - Turbine Hall Area;Steel Structure"
1.4.2.11.11.2-1,THSS1010,"Turbine Hall GL5-7 - Erect steel columns SC3(SC2) at GL.6-7 /H",7112,"CCGTD1_IPS",TT_Task,"58739",-,-,-,100,TK_Complete,26/06/2018,11/06/2018,27/06/2018,16/06/2018,"THGF1100 FS,PROMA020 FS","THGF1100,PROMA020","THSS1020 FS,THSS1110 FS","THSS1020,THSS1110",151,186,152,187,35,43,35,43,31,,"CCGT D1_Integrated Programme Schedule;CIVILS;CONSTRUCTION;Power Island - Turbine Hall Area;Steel Structure;Grid Line 5 to 7",2,2,0.0000171481,0.012207528,0.0028484232,1,0.8,0.0003267428,0.0136986301,0.0061538462,0.0258854167,0.0313315927,0.009009009,0.0022421525,0.8,0.1005948309
1.4.2.11.11.2-2,THSS1020,"Turbine Hall GL5-7 - Erect steel columns SC3 at GL.7 /G2-G1",7112,"CCGTD1_IPS",TT_Task,"58739",-,-,-,100,TK_Complete,28/06/2018,14/06/2018,30/06/2018,20/06/2018,"THGF1100 FS,THSS1010 FS","THGF1100,THSS1010","THSS1030 FS,THSS1110 FS,THSS1120 FS","THSS1030,THSS1110,THSS1120",152,186,152,187,35,43,35,43,31,,"CCGT D1_Integrated Programme Schedule;CIVILS;CONSTRUCTION;Power Island - Turbine Hall Area;Steel Structure;Grid Line 5 to 7",2,3,0.0000236824,0.0120040692,0.003051882,2,0.8,0.0002273013,0.0136986301,0.0092307692,0.0357490234,0.0308093995,0.0096525097,0.0044843049,0.8,0.059848865
1.4.2.11.11.2-3,THSS1030,"Turbine Hall GL5-7 - Erect steel columns SC3 at GL.7 /F1",7112,"CCGTD1_IPS",TT_Task,"58739",-,-,-,100,TK_Complete,26/11/2018,26/09/2018,26/11/2018,26/09/2018,"THSS1020 FS,THGF3100 FS,THGF5100 FS,THGF9100 FS","THSS1020,THGF3100,THGF5100,THGF9100","THSS1040 FS,THSS1120 FS","THSS1040,THSS1120",173,201,173,201,40,47,40,47,40,,"CCGT D1_Integrated Programme Schedule;CIVILS;CONSTRUCTION;Power Island - Turbine Hall Area;Steel Structure;Grid Line 5 to 7",4,2,0.0001913275,0.0109867752,0.0284842319,0,1.0,0.0000812387,0.0273972603,0.0061538462,0.2888125,0.0281984334,0.0900900901,0.0,1.0,0.0
1.4.2.11.11.2-4,THSS1040,"Turbine Hall GL5-7 - Erect steel columns SC3 at GL.7 /F",7112,"CCGTD1_IPS",TT_Task,"58739",-,-,-,100,TK_Complete,26/11/2018,27/09/2018,26/11/2018,27/09/2018,"THSS1030 FS","THSS1030","THSS1050 FS,THSS1120 FS,THSS1130 FS","THSS1050,THSS1120,THSS1130",173,201,173,201,40,47,40,47,40,,"CCGT D1_Integrated Programme Schedule;CIVILS;CONSTRUCTION;Power Island - Turbine Hall Area;Steel Structure;Grid Line 5 to 7",1,3,0.0001033092,0.0107833164,0.0286876907,0,1.0,0.0000812387,0.0068493151,0.0092307692,0.1559472656,0.0276762402,0.0907335907,0.0,1.0,0.0
1.4.2.11.11.2-5,THSS1050,"Turbine Hall GL5-7 - Erect steel columns SC3 at GL.7 /E",7112,"CCGTD1_IPS",TT_Task,"58739",-,-,-,100,TK_Complete,27/11/2018,28/09/2018,27/11/2018,28/09/2018,"THSS1040 FS,THCP0170 FS","THSS1040,THCP0170","THSS1060 FS,THSS1130 FS,THSS1140 FS","THSS1060,THSS1130,THSS1140",173,202,173,202,40,47,40,47,41,,"CCGT D1_Integrated Programme Schedule;CIVILS;CONSTRUCTION;Power Island - Turbine Hall Area;Steel Structure;Grid Line 5 to 7",2,3,0.0001438838,0.0099694812,0.0288911495,0,1.0,0.0000812387,0.0136986301,0.0092307692,0.2171953125,0.0255874674,0.0913770914,0.0,1.0,0.0
1.4.2.11.11.2-6,THSS1060,"Turbine Hall GL5-7 - Erect steel columns SC3 at GL.7 /D",7112,"CCGTD1_IPS",TT_Task,"58739",-,-,-,100,TK_Complete,28/11/2018,29/09/2018,28/11/2018,29/09/2018,"THSS1050 FS","THSS1050","THSS1070 FS,THSS1140 FS,THSS1150 FS","THSS1070,THSS1140,THSS1150",174,202,174,202,40,47,40,47,41,,"CCGT D1_Integrated Programme Schedule;CIVILS;CONSTRUCTION;Power Island - Turbine Hall Area;Steel Structure;Grid Line 5 to 7",1,3,0.0001078059,0.0089521872,0.0290946083,0,1.0,0.0000812387,0.0068493151,0.0092307692,0.162735026,0.0229765013,0.092020592,0.0,1.0,0.0
1.4.2.11.11.2-7,THSS1070,"Turbine Hall GL5-7 - Erect steel columns SC3 at GL.7 /C",7112,"CCGTD1_IPS",TT_Task,"58739",-,-,-,100,TK_Complete,29/11/2018,02/10/2018,29/11/2018,02/10/2018,"THSS1060 FS","THSS1060","THSS1080 FS,THSS1150 FS,THSS1160 FS","THSS1080,THSS1150,THSS1160",174,202,174,202,40,47,40,47,41,,"CCGT D1_Integrated Programme Schedule;CIVILS;CONSTRUCTION;Power Island - Turbine Hall Area;Steel Structure;Grid Line 5 to 7",1,3,0.0000929181,0.0079348932,0.0292980671,0,1.0,0.0000812387,0.0068493151,0.0092307692,0.1402617188,0.0203655352,0.0926640927,0.0,1.0,0.0
1.4.2.11.11.2-8,THSS1080,"Turbine Hall GL5-7 - Erect steel columns SC3 at GL.7 /B",7112,"CCGTD1_IPS",TT_Task,"58739",-,-,-,100,TK_Complete,30/11/2018,03/10/2018,30/11/2018,03/10/2018,"THSS1070 FS","THSS1070","THSS1090 FS,THSS1160 FS,THSS1170 FS","THSS1090,THSS1160,THSS1170",174,202,174,202,40,47,40,47,41,,"CCGT D1_Integrated Programme Schedule;CIVILS;CONSTRUCTION;Power Island - Turbine Hall Area;Steel Structure;Grid Line 5 to 7",1,3,0.0000802822,0.0069175992,0.0295015259,0,1.0,0.0000812387,0.0068493151,0.0092307692,0.1211875,0.0177545692,0.0933075933,0.0,1.0,0.0
1.4.2.11.11.2-9,THSS1090,"Turbine Hall GL5-7 - Erect steel columns SC3 at GL.7 /A",7112,"CCGTD1_IPS",TT_Task,"58739",-,-,-,100,TK_Complete,26/11/2018,04/10/2018,28/11/2018,06/10/2018,"THSS1080 FS","THSS1080","THSS2030 FS,THSS1170 FS","THSS2030,THSS1170",173,202,174,203,40,47,40,47,40,,"CCGT D1_Integrated Programme Schedule;CIVILS;CONSTRUCTION;Power Island - Turbine Hall Area;Steel Structure;Grid Line 5 to 7",1,2,0.0000695586,0.0059003052,0.0297049847,2,1.0,0.0001042911,0.0068493151,0.0061538462,0.105,0.0151436031,0.093951094,0.0044843049,1.0,0.0094456524
1.4.2.11.11.2-10,THSS1110,"Turbine Hall GL5-7 /H-G1 (Bay 1b) - Connect erected columns by beams and bracing to +32.26",7112,"CCGTD1_IPS",TT_Task,"58739",-,-,-,100,TK_Complete,26/06/2018,21/06/2018,28/06/2018,23/06/2018,"THSS1010 FS,THSS1020 FS","THSS1010,THSS1020","THSS1120 FS,THSS1210 FS,THSS1220 FS","THSS1120,THSS1210,THSS1220",151,187,152,188,35,43,35,43,31,,"CCGT D1_Integrated Programme Schedule;CIVILS;CONSTRUCTION;Power Island - Turbine Hall Area;Steel Structure;Grid Line 5 to 7",2,3,0.0000139572,0.0079348932,0.0032553408,2,1.0,0.0003171836,0.0136986301,0.0092307692,0.0210686849,0.0203655352,0.0102960103,0.0044843049,1.0,0.0966779475
1.4.2.11.11.2-11,THSS1120,"Turbine Hall GL5-7 /G1 -F (Bay 2b) - Connect erected columns by beams and bracing to +32.26",7112,"CCGTD1_IPS",TT_Task,"58739",-,-,-,100,TK_Complete,26/11/2018,28/09/2018,28/11/2018,02/10/2018,"THSS1110 FS,THSS1020 FS,THSS1030 FS,THSS1040 FS","THSS1110,THSS1020,THSS1030,THSS1040","THSS1130 FS,THSS1220 FS,THSS1230 FS","THSS1130,THSS1220,THSS1230",173,202,174,202,40,47,40,47,40,,"CCGT D1_Integrated Programme Schedule;CIVILS;CONSTRUCTION;Power Island - Turbine Hall Area;Steel Structure;Grid Line 5 to 7",4,3,0.0000931487,0.0065106816,0.0290946083,2,0.8,0.0005519313,0.0273972603,0.0092307692,0.1406097005,0.0167101828,0.092020592,0.0044843049,0.8,0.1928653961
1.4.2.11.11.2-12,THSS1130,"Turbine Hall GL5-7 /F-E (Bay 3b) - Connect erected columns by beams and bracing to +32.26",7112,"CCGTD1_IPS",TT_Task,"58739",-,-,-,100,TK_Complete,26/11/2018,03/10/2018,28/11/2018,05/10/2018,"THSS1120 FS,THSS1040 FS,THSS1050 FS","THSS1120,THSS1040,THSS1050","THSS1140 FS,THSS1230 FS,THSS1240 FS","THSS1140,THSS1230,THSS1240",173,202,174,203,40,47,40,47,40,,"CCGT D1_Integrated Programme Schedule;CIVILS;CONSTRUCTION;Power Island - Turbine Hall Area;Steel Structure;Grid Line 5 to 7",3,3,0.0000303801,0.0059003052,0.0295015259,2,1.0,0.0006204096,0.0205479452,0.0092307692,0.045859375,0.0151436031,0.0933075933,0.0044843049,1.0,0.2209242318
1.4.2.11.11.2-13,THSS1140,"Turbine Hall GL5-7 /E-D (Bay 4b) - Connect erected columns by beams and bracing to +32.26",7112,"CCGTD1_IPS",TT_Task,"58739",-,-,-,100,TK_Complete,29/11/2018,06/10/2018,01/12/2018,09/10/2018,"THSS1130 FS,THSS1050 FS,THSS1060 FS","THSS1130,THSS1050,THSS1060","THSS1150 FS,THSS1240 FS,THSS1250 FS","THSS1150,THSS1240,THSS1250",174,203,174,203,40,47,40,47,41,,"CCGT D1_Integrated Programme Schedule;CIVILS;CONSTRUCTION;Power Island - Turbine Hall Area;Steel Structure;Grid Line 5 to 7",3,3,0.0000349574,0.00508647,0.0299084435,2,1.0,0.000678901,0.0205479452,0.0092307692,0.0527688802,0.0130548303,0.0945945946,0.0044843049,1.0,0.2448909911
1.4.2.11.11.2-14,THSS1150,"Turbine Hall GL5-7 /D-C (Bay 5b) - Connect erected columns by beams and bracing to +32.26",7112,"CCGTD1_IPS",TT_Task,"58739",-,-,-,100,TK_Complete,03/12/2018,10/10/2018,05/12/2018,12/10/2018,"THSS1140 FS,THSS1060 FS,THSS1070 FS","THSS1140,THSS1060,THSS1070","THSS1160 FS,THSS1250 FS,THSS1260 FS","THSS1160,THSS1250,THSS1260",174,203,175,204,40,47,40,47,41,,"CCGT D1_Integrated Programme Schedule;CIVILS;CONSTRUCTION;Power Island - Turbine Hall Area;Steel Structure;Grid Line 5 to 7",3,3,0.0000194176,0.0042726348,0.0303153611,2,1.0,0.0007295582,0.0205479452,0.0092307692,0.0293111979,0.0109660574,0.0958815959,0.0044843049,1.0,0.2656476809
1.4.2.11.11.2-15,THSS1160,"Turbine Hall GL5-7 /C-B (Bay 6b) - Connect erected columns by beams and bracing to +32.26",7112,"CCGTD1_IPS",TT_Task,"58739",-,-,-,100,TK_Complete,06/12/2018,13/10/2018,08/12/2018,16/10/2018,"THSS1150 FS,THSS1070 FS,THSS1080 FS","THSS1150,THSS1070,THSS1080","THSS1170 FS,THSS1260 FS,THSS1270 FS","THSS1170,THSS1260,THSS1270",175,204,175,204,40,47,40,47,42,,"CCGT D1_Integrated Programme Schedule;CIVILS;CONSTRUCTION;Power Island - Turbine Hall Area;Steel Structure;Grid Line 5 to 7",3,3,0.0000127748,0.0034587996,0.0307222787,2,1.0,0.0007642442,0.0205479452,0.0092307692,0.0192838542,0.0088772846,0.0971685972,0.0044843049,1.0,0.2798602115
1.4.2.11.11.2-16,THSS1170,"Turbine Hall GL5-7 /B-A (Bay 7b) - Connect erected columns by beams and bracing to +32.26",7112,"CCGTD1_IPS",TT_Task,"58739",-,-,-,100,TK_Complete,10/12/2018,17/10/2018,12/12/2018,23/10/2018,"THSS1160 FS,THSS1080 FS,THSS1090 FS","THSS1160,THSS1080,THSS1090","THSS1270 FS,THSS1280 FS","THSS1270,THSS1280",175,204,176,205,41,47,41,47,42,,"CCGT D1_Integrated Programme Schedule;CIVILS;CONSTRUCTION;Power Island - Turbine Hall Area;Steel Structure;Grid Line 5 to 7",3,2,0.0000071525,0.0026449644,0.0311291963,2,0.6,0.0008080067,0.0205479452,0.0061538462,0.010796875,0.0067885117,0.0984555985,0.0044843049,0.6,0.2977918139
1.4.2.11.11.2-17,THSS1210,"Turbine Hall GL.5-7 - Install main beams to the steel columns at GL.5-7 /H, +32.26",7112,"CCGTD1_IPS",TT_Task,"58739",-,-,-,100,TK_Complete,03/07/2018,25/06/2018,03/07/2018,25/06/2018,"THSS1110 FS","THSS1110","THSS1220 FS,THSS1310 FS,THRF1410 SS","THSS1220,THSS1310,THRF1410",152,188,152,188,35,43,35,43,32,,"CCGT D1_Integrated Programme Schedule;CIVILS;CONSTRUCTION;Power Island - Turbine Hall Area;Steel Structure;Grid Line 5 to 7",1,3,0.0000072043,0.0063072228,0.0034587996,0,1.0,0.0000812387,0.0068493151,0.0092307692,0.010875,0.0161879896,0.0109395109,0.0,1.0,0.0
1.4.2.11.11.2-18,THSS1220,"Turbine Hall GL.5-7 - Install main beams to the steel columns at GL.5-7 /G1, +32.26",7112,"CCGTD1_IPS",TT_Task,"58739",-,-,-,100,TK_Complete,26/11/2018,03/10/2018,26/11/2018,03/10/2018,"THSS1210 FS,THSS1110 FS,THSS1120 FS","THSS1210,THSS1110,THSS1120","THSS1230 FS,THSS1310 FS,THSS1320 FS","THSS1230,THSS1310,THSS1320",173,202,173,202,40,47,40,47,40,,"CCGT D1_Integrated Programme Schedule;CIVILS;CONSTRUCTION;Power Island - Turbine Hall Area;Steel Structure;Grid Line 5 to 7",3,3,0.0000316915,0.00508647,0.0295015259,0,1.0,0.0000812387,0.0205479452,0.0092307692,0.0478388672,0.0130548303,0.0933075933,0.0,1.0,0.0
1.4.2.11.11.2-19,THSS1230,"Turbine Hall GL.5-7 - Install main beams to the steel columns at GL.5-7 /F, +32.26",7112,"CCGTD1_IPS",TT_Task,"58739",-,-,-,100,TK_Complete,29/11/2018,06/10/2018,29/11/2018,06/10/2018,"THSS1220 FS,THSS1120 FS,THSS1130 FS","THSS1220,THSS1120,THSS1130","THSS1240 FS,THSS1320 FS,THSS1330 FS","THSS1240,THSS1320,THSS1330",174,203,174,203,40,47,40,47,41,,"CCGT D1_Integrated Programme Schedule;CIVILS;CONSTRUCTION;Power Island - Turbine Hall Area;Steel Structure;Grid Line 5 to 7",3,3,0.0000436557,0.0046795524,0.0301119023,0,1.0,0.0000812387,0.0205479452,0.0092307692,0.0658990885,0.0120104439,0.0952380952,0.0,1.0,0.0
1.4.2.11.11.2-20,THSS1240,"Turbine Hall GL.5-7 - Install main beams to the steel columns at GL.5-7 /E, +32.26",7112,"CCGTD1_IPS",TT_Task,"58739",-,-,-,100,TK_Complete,03/12/2018,10/10/2018,03/12/2018,10/10/2018,"THSS1230 FS,THSS1130 FS,THSS1140 FS","THSS1230,THSS1130,THSS1140","THSS1250 FS,THSS1330 FS,THSS1340 FS","THSS1250,THSS1330,THSS1340",174,203,174,203,40,47,40,47,41,,"CCGT D1_Integrated Programme Schedule;CIVILS;CONSTRUCTION;Power Island - Turbine Hall Area;Steel Structure;Grid Line 5 to 7",3,3,0.0000173629,0.004069176,0.0307222787,0,1.0,0.0000812387,0.0205479452,0.0092307692,0.0262096354,0.0104438642,0.0971685972,0.0,1.0,0.0
1.4.2.11.11.2-21,THSS1250,"Turbine Hall GL.5-7 - Install main beams to the steel columns at GL.5-7 /D, +32.26",7112,"CCGTD1_IPS",TT_Task,"58739",-,-,-,100,TK_Complete,06/12/2018,13/10/2018,06/12/2018,13/10/2018,"THSS1240 FS,THSS1140 FS,THSS1150 FS","THSS1240,THSS1140,THSS1150","THSS1260 FS,THSS1340 FS,THSS1350 FS","THSS1260,THSS1340,THSS1350",175,204,175,204,40,47,40,47,42,,"CCGT D1_Integrated Programme Schedule;CIVILS;CONSTRUCTION;Power Island - Turbine Hall Area;Steel Structure;Grid Line 5 to 7",3,3,0.0000220562,0.0034587996,0.0313326551,0,1.0,0.0000812387,0.0205479452,0.0092307692,0.0332942708,0.0088772846,0.0990990991,0.0,1.0,0.0
1.4.2.11.11.2-22,THSS1260,"Turbine Hall GL.5-7 - Install main beams to the steel columns at GL.5-7 /C, +32.26",7112,"CCGTD1_IPS",TT_Task,"58739",-,-,-,100,TK_Complete,10/12/2018,17/10/2018,10/12/2018,17/10/2018,"THSS1250 FS,THSS1150 FS,THSS1160 FS","THSS1250,THSS1150,THSS1160","THSS1270 FS,THSS1350 FS,THSS1360 FS","THSS1270,THSS1350,THSS1360",175,204,175,204,41,47,41,47,42,,"CCGT D1_Integrated Programme Schedule;CIVILS;CONSTRUCTION;Power Island - Turbine Hall Area;Steel Structure;Grid Line 5 to 7",3,3,0.0000122142,0.0028484232,0.0319430315,0,1.0,0.0000812387,0.0205479452,0.0092307692,0.0184375,0.007310705,0.101029601,0.0,1.0,0.0
1.4.2.11.11.2-23,THSS1270,"Turbine Hall GL.5-7 - Install main beams to the steel columns at GL.5-7 /B, +32.26",7112,"CCGTD1_IPS",TT_Task,"58739",-,-,-,100,TK_Complete,13/12/2018,24/10/2018,13/12/2018,24/10/2018,"THSS1260 FS,THSS1160 FS,THSS1170 FS","THSS1260,THSS1160,THSS1170","THSS1360 FS,THSS1370 FS","THSS1360,THSS1370",176,205,176,205,41,48,41,48,42,,"CCGT D1_Integrated Programme Schedule;CIVILS;CONSTRUCTION;Power Island - Turbine Hall Area;Steel Structure;Grid Line 5 to 7",3,2,0.0000055516,0.0022380468,0.0325534079,0,1.0,0.0000812387,0.0205479452,0.0061538462,0.0083802083,0.0057441253,0.102960103,0.0,1.0,0.0
1.4.2.11.11.2-24,THSS1280,"Turbine Hall GL.5-7 - Install main beams to the steel columns at GL.5-7 /A, +32.26",7112,"CCGTD1_IPS",TT_Task,"58739",-,-,-,100,TK_Complete,13/12/2018,25/10/2018,13/12/2018,25/10/2018,"THSS1170 FS","THSS1170","THSS1370 FS","THSS1370",176,205,176,205,41,48,41,48,42,,"CCGT D1_Integrated Programme Schedule;CIVILS;CONSTRUCTION;Power Island - Turbine Hall Area;Steel Structure;Grid Line 5 to 7",1,1,0.000000559,0.0018311292,0.0313326551,0,1.0,0.0000812387,0.0068493151,0.0030769231,0.00084375,0.0046997389,0.0990990991,0.0,1.0,0.0
1.4.2.11.11.2-25,THSS1310,"Turbine Hall GL5-7 /H-G1 (Bay 1b) - Connect installed trusses by secondary beams and bracing (Event 046 - ROI #199)",7112,"CCGTD1_IPS",TT_Task,"58739",-,-,-,100,TK_Complete,26/11/2018,30/10/2018,26/11/2018,03/11/2018,"THSS1210 FS,THSS1220 FS","THSS1210,THSS1220","EV046010 SS,EV046010 FF,THRF1420 FS","EV046010,EV046010,THRF1420",173,206,173,207,40,48,40,48,40,,"CCGT D1_Integrated Programme Schedule;CIVILS;CONSTRUCTION;Power Island - Turbine Hall Area;Steel Structure;Grid Line 5 to 7",2,1,0.0000152202,0.0026449644,0.0297049847,0,0.2,0.0000812387,0.0136986301,0.0030769231,0.0229752604,0.0067885117,0.093951094,0.0,0.2,0.0
1.4.2.11.11.2-26,THSS1320,"Turbine Hall GL5-7 /G1 -F (Bay 2b) - Connect installed trusses by secondary beams and bracing",7112,"CCGTD1_IPS",TT_Task,"58739",-,-,-,100,TK_Complete,26/11/2018,08/10/2018,27/11/2018,09/10/2018,"THSS1220 FS,THSS1230 FS","THSS1220,THSS1230","THSS1330 FS,THRF1420 FS","THSS1330,THRF1420",173,203,173,203,40,47,40,47,40,,"CCGT D1_Integrated Programme Schedule;CIVILS;CONSTRUCTION;Power Island - Turbine Hall Area;Steel Structure;Grid Line 5 to 7",2,2,0.0000184579,0.0036622584,0.0303153611,1,1.0,0.0001849742,0.0136986301,0.0061538462,0.0278626302,0.0093994778,0.0958815959,0.0022421525,1.0,0.0425054358
1.4.2.11.11.2-27,THSS1330,"Turbine Hall GL5-7 /F-E (Bay 3b) - Connect installed trusses by secondary beams and bracing",7112,"CCGTD1_IPS",TT_Task,"58739",-,-,-,100,TK_Complete,28/11/2018,11/10/2018,29/11/2018,12/10/2018,"THSS1320 FS,THSS1230 FS,THSS1240 FS","THSS1320,THSS1230,THSS1240","THSS1340 FS,THRF1430 FS,THSS1500 FS","THSS1340,THRF1430,THSS1500",174,203,174,204,40,47,40,47,41,,"CCGT D1_Integrated Programme Schedule;CIVILS;CONSTRUCTION;Power Island - Turbine Hall Area;Steel Structure;Grid Line 5 to 7",3,2,0.0000169204,0.0032553408,0.0311291963,1,1.0,0.0002028722,0.0205479452,0.0061538462,0.0255416667,0.0083550914,0.0984555985,0.0022421525,1.0,0.049839101
1.4.2.11.11.2-28,THSS1340,"Turbine Hall GL5-7 /E-D (Bay 4b) - Connect installed trusses by secondary beams and bracing",7112,"CCGTD1_IPS",TT_Task,"58739",-,-,-,100,TK_Complete,30/11/2018,15/10/2018,01/12/2018,16/10/2018,"THSS1330 FS,THSS1240 FS,THSS1250 FS","THSS1330,THSS1240,THSS1250","THSS1350 FS,THRF1440 FS,THSS1500 FF","THSS1350,THRF1440,THSS1500",174,204,174,204,40,47,40,47,41,,"CCGT D1_Integrated Programme Schedule;CIVILS;CONSTRUCTION;Power Island - Turbine Hall Area;Steel Structure;Grid Line 5 to 7",3,2,0.0000110169,0.0028484232,0.0319430315,1,1.0,0.0002079586,0.0205479452,0.0061538462,0.0166302083,0.007310705,0.101029601,0.0022421525,1.0,0.051923245
1.4.2.11.11.2-29,THSS1350,"Turbine Hall GL5-7 /D-C (Bay 5b) - Connect installed trusses by secondary beams and bracing",7112,"CCGTD1_IPS",TT_Task,"58739",-,-,-,100,TK_Complete,03/12/2018,18/10/2018,04/12/2018,19/10/2018,"THSS1340 FS,THSS1250 FS,THSS1260 FS","THSS1340,THSS1250,THSS1260","THSS1360 FS,THRF1450 FS,THSS1500 FF","THSS1360,THRF1450,THSS1500",174,204,174,205,40,47,40,47,41,,"CCGT D1_Integrated Programme Schedule;CIVILS;CONSTRUCTION;Power Island - Turbine Hall Area;Steel Structure;Grid Line 5 to 7",3,2,0.0000122883,0.0024415056,0.0327568667,1,1.0,0.000209405,0.0205479452,0.0061538462,0.0185494792,0.0062663185,0.1036036036,0.0022421525,1.0,0.0525159069
1.4.2.11.11.2-30,THSS1360,"Turbine Hall GL5-7 /C-B (Bay 6b) - Connect installed trusses by 2ndary beams & bracing [DEF_WK07 not required]",7112,"CCGTD1_IPS",TT_Task,"58739",-,-,-,100,TK_Complete,26/11/2018,25/10/2018,27/11/2018,26/10/2018,"THSS1350 FS,THSS1260 FS,THSS1270 FS","THSS1350,THSS1260,THSS1270","THSS1370 FS,THRF1460 FS,THSS1500 FF","THSS1370,THRF1460,THSS1500",173,205,173,206,40,48,40,48,40,,"CCGT D1_Integrated Programme Schedule;CIVILS;CONSTRUCTION;Power Island - Turbine Hall Area;Steel Structure;Grid Line 5 to 7",3,2,0.0000073457,0.002034588,0.0335707019,1,1.0,0.0002098166,0.0205479452,0.0061538462,0.0110885417,0.0052219321,0.1061776062,0.0022421525,1.0,0.0526845386
1.4.2.11.11.2-31,THSS1370,"Turbine Hall GL5-7 /B-A (Bay 7b) - Connect installed trusses by secondary beams and bracing",7112,"CCGTD1_IPS",TT_Task,"58739",-,-,-,100,TK_Complete,14/12/2018,27/10/2018,15/12/2018,29/10/2018,"THSS1360 FS,THSS1270 FS,THSS1280 FS,THTT4200 FS","THSS1360,THSS1270,THSS1280,THTT4200","THRF1470 FS,THSS1500 FF","THRF1470,THSS1500",176,206,176,206,41,48,41,48,42,,"CCGT D1_Integrated Programme Schedule;CIVILS;CONSTRUCTION;Power Island - Turbine Hall Area;Steel Structure;Grid Line 5 to 7",4,1,0.0000266848,0.0016276704,0.0343845371,1,1.0,0.0002388863,0.0273972603,0.0030769231,0.04028125,0.0041775457,0.1087516088,0.0022421525,1.0,0.064595792
1.4.2.11.11.3,58738,"Grid Line 1 to 5",7112,"CCGTD1_IPS",WBS,"58737",,,,100,Complete,23/04/2018,29/03/2018,02/01/2020,08/08/2018,,,,,142,175,231,194,33,41,53,45,,,"CCGT D1_Integrated Programme Schedule;CIVILS;CONSTRUCTION;Power Island - Turbine Hall Area;Steel Structure"
1.4.2.11.11.3-1,THSS0010,"Turbine Hall GL1~5 - Erect steel columns SC1(SC2) (w/ Overhead Crane support columns) at GL.1-5 /H",7112,"CCGTD1_IPS",TT_Task,"58738",-,-,-,100,TK_Complete,23/04/2018,29/03/2018,10/05/2018,13/04/2018,"PROMA025 FS,THGF1100 FF","PROMA025,THGF1100","THSS0110 FS","THSS0110",142,175,145,178,33,41,33,41,25,,"CCGT D1_Integrated Programme Schedule;CIVILS;CONSTRUCTION;Power Island - Turbine Hall Area;Steel Structure;Grid Line 1 to 5",2,1,0.0000139531,0.0054933876,0.003051882,17,1.0,0.0002091792,0.0136986301,0.0030769231,0.0210625,0.0140992167,0.0096525097,0.0381165919,1.0,0.0524233708
1.4.2.11.11.3-2,THSS0020,"Turbine Hall GL1~5 - Erect steel columns SC1 (w/ Overhead Crane support columns) at GL.1 /G2-C",7112,"CCGTD1_IPS",TT_Task,"58738",-,-,-,100,TK_Complete,28/04/2018,31/03/2018,07/05/2018,07/04/2018,"THGF2100 FS,THGF0100 FS,THGF4100 FS","THGF2100,THGF0100,THGF4100","THSS0110 FS,THSS0120 FS,THSS0030 FS","THSS0110,THSS0120,THSS0030",143,176,144,177,33,41,33,41,26,,"CCGT D1_Integrated Programme Schedule;CIVILS;CONSTRUCTION;Power Island - Turbine Hall Area;Steel Structure;Grid Line 1 to 5",3,3,0.0000373463,0.0105798576,0.0036622584,9,1.0,0.0002887098,0.0205479452,0.0092307692,0.056375,0.027154047,0.0115830116,0.0201793722,1.0,0.0850108716
1.4.2.11.11.3-3,THSS0030,"Turbine Hall GL1~5 - Erect steel columns SC1 (w/ Overhead Crane support columns) at GL.5 /G",7112,"CCGTD1_IPS",TT_Task,"58738",-,-,-,100,TK_Complete,08/05/2018,09/04/2018,09/05/2018,10/04/2018,"THSS0020 FS","THSS0020","THSS0110 FS,THSS0120 FS,THSS0130 FS,THSS0040 FF","THSS0110,THSS0120,THSS0130,THSS0040",144,177,145,177,33,41,33,41,27,,"CCGT D1_Integrated Programme Schedule;CIVILS;CONSTRUCTION;Power Island - Turbine Hall Area;Steel Structure;Grid Line 1 to 5",1,4,0.0000229611,0.0103763988,0.0038657172,1,1.0,0.000122189,0.0068493151,0.0123076923,0.0346601563,0.0266318538,0.0122265122,0.0022421525,1.0,0.0167793176
1.4.2.11.11.3-4,THSS0040,"Turbine Hall GL1~5 - Erect steel columns SC1 (w/ Overhead Crane support columns) at GL.5 /F",7112,"CCGTD1_IPS",TT_Task,"58738",-,-,-,100,TK_Complete,08/05/2018,09/04/2018,09/05/2018,10/04/2018,"THSS0030 FF","THSS0030","THSS0130 FS,THSS0140 FS,THSS0050 FS","THSS0130,THSS0140,THSS0050",144,177,145,177,33,41,33,41,27,,"CCGT D1_Integrated Programme Schedule;CIVILS;CONSTRUCTION;Power Island - Turbine Hall Area;Steel Structure;Grid Line 1 to 5",1,3,0.0000184661,0.0089521872,0.004069176,1,1.0,0.0000942428,0.0068493151,0.0092307692,0.027875,0.0229765013,0.0128700129,0.0022421525,1.0,0.0053283813
1.4.2.11.11.3-5,THSS0050,"Turbine Hall GL1~5 - Erect steel columns SC1 (w/ Overhead Crane support columns) at GL.5 /E",7112,"CCGTD1_IPS",TT_Task,"58738",-,-,-,100,TK_Complete,26/05/2018,03/05/2018,26/05/2018,03/05/2018,"THSS0040 FS","THSS0040","THSS0060 FS,THSS0140 FS,THSS0150 FS","THSS0060,THSS0140,THSS0150",147,180,147,180,34,42,34,42,28,,"CCGT D1_Integrated Programme Schedule;CIVILS;CONSTRUCTION;Power Island - Turbine Hall Area;Steel Structure;Grid Line 1 to 5",1,3,0.0000145237,0.0065106816,0.0042726348,0,1.0,0.0000812387,0.0068493151,0.0092307692,0.0219238281,0.0167101828,0.0135135135,0.0,1.0,0.0
1.4.2.11.11.3-6,THSS0060,"Turbine Hall GL1~5 - Erect steel columns SC1 (w/ Overhead Crane support columns) at GL.5 /D",7112,"CCGTD1_IPS",TT_Task,"58738",-,-,-,100,TK_Complete,28/05/2018,05/05/2018,28/05/2018,05/05/2018,"THSS0050 FS","THSS0050","THSS0070 FS,THSS0150 FS,THSS0160 FS","THSS0070,THSS0150,THSS0160",147,181,147,181,34,42,34,42,29,,"CCGT D1_Integrated Programme Schedule;CIVILS;CONSTRUCTION;Power Island - Turbine Hall Area;Steel Structure;Grid Line 1 to 5",1,3,0.0000108634,0.006103764,0.0044760936,0,1.0,0.0000812387,0.0068493151,0.0092307692,0.0163984375,0.0156657963,0.0141570142,0.0,1.0,0.0
1.4.2.11.11.3-7,THSS0070,"Turbine Hall GL1~5 - Erect steel columns SC1 (w/ Overhead Crane support columns) at GL.5 /C",7112,"CCGTD1_IPS",TT_Task,"58738",-,-,-,100,TK_Complete,29/05/2018,07/05/2018,29/05/2018,07/05/2018,"THSS0060 FS","THSS0060","THSS0160 FS,THSS0170 FS","THSS0160,THSS0170",147,181,147,181,34,42,34,42,29,,"CCGT D1_Integrated Programme Schedule;CIVILS;CONSTRUCTION;Power Island - Turbine Hall Area;Steel Structure;Grid Line 1 to 5",1,2,0.0000059518,0.0052899288,0.0046795524,0,1.0,0.0000812387,0.0068493151,0.0061538462,0.008984375,0.0135770235,0.0148005148,0.0,1.0,0.0
1.4.2.11.11.3-8,THSS0080,"Turbine Hall GL1~5 - Erect steel columns SC1 (w/ Overhead Crane support columns) at GL.1 /B",7112,"CCGTD1_IPS",TT_Task,"58738",-,-,-,100,TK_Complete,04/06/2018,02/05/2018,04/06/2018,02/05/2018,"THGF6100 FS","THGF6100","THSS0090 FS,THSS0170 FS,THSS0180 FS","THSS0090,THSS0170,THSS0180",148,180,148,180,34,42,34,42,29,,"CCGT D1_Integrated Programme Schedule;CIVILS;CONSTRUCTION;Power Island - Turbine Hall Area;Steel Structure;Grid Line 1 to 5",1,3,0.0000297487,0.0046795524,0.0150559512,0,1.0,0.0000812387,0.0068493151,0.0092307692,0.04490625,0.0120104439,0.0476190476,0.0,1.0,0.0
1.4.2.11.11.3-9,THSS0090,"Turbine Hall GL1~5 - Erect steel columns SC1(SC2)(w/ Overhead Crane support columns) at GL.1-4 /A",7112,"CCGTD1_IPS",TT_Task,"58738",-,-,-,100,TK_Complete,05/06/2018,03/05/2018,08/06/2018,08/05/2018,"THGF6100 FS,THSS0080 FS","THGF6100,THSS0080","THSS0100 FS,THSS0180 FS","THSS0100,THSS0180",148,180,149,181,34,42,34,42,29,,"CCGT D1_Integrated Programme Schedule;CIVILS;CONSTRUCTION;Power Island - Turbine Hall Area;Steel Structure;Grid Line 1 to 5",2,2,0.0000167065,0.0028484232,0.01525941,3,1.0,0.0001800345,0.0136986301,0.0061538462,0.02521875,0.007310705,0.0482625483,0.0067264574,1.0,0.0404813674
1.4.2.11.11.3-10,THSS0100,"Turbine Hall GL1~5 - Erect steel columns SC1 (w/ Overhead Crane support columns) at GL.5 /A",7112,"CCGTD1_IPS",TT_Task,"58738",-,-,-,100,TK_Complete,09/06/2018,09/05/2018,13/06/2018,12/05/2018,"THSS0090 FS","THSS0090","THSS0180 FS","THSS0180",149,181,150,182,34,42,35,42,30,,"CCGT D1_Integrated Programme Schedule;CIVILS;CONSTRUCTION;Power Island - Turbine Hall Area;Steel Structure;Grid Line 1 to 5",1,1,0.0,0.0026449644,0.0154628688,4,1.0,0.0001833894,0.0068493151,0.0030769231,0.0,0.0067885117,0.0489060489,0.0089686099,1.0,0.0418560503
1.4.2.11.11.3-11,THSS0210,"Turbine Hall GL.1-5 - Install main beams to the steel columns at GL.1-5 /H, +37.26",7112,"CCGTD1_IPS",TT_Task,"58738",-,-,-,100,TK_Complete,15/05/2018,18/04/2018,16/05/2018,19/04/2018,"THSS0110 FS","THSS0110","THSS0310 FS,THSS0220 FS","THSS0310,THSS0220",145,178,146,178,34,41,34,41,28,,"CCGT D1_Integrated Programme Schedule;CIVILS;CONSTRUCTION;Power Island - Turbine Hall Area;Steel Structure;Grid Line 1 to 5",1,2,0.0000070594,0.0042726348,0.0073245168,1,1.0,0.0002007709,0.0068493151,0.0061538462,0.01065625,0.0109660574,0.0231660232,0.0022421525,1.0,0.0489781032
1.4.2.11.11.3-12,THSS0220,"Turbine Hall GL.1-5 - Install main trusses to the steel columns at GL.1-5 /G2-G1, +37.26",7112,"CCGTD1_IPS",TT_Task,"58738",-,-,-,100,TK_Complete,17/05/2018,12/04/2018,18/05/2018,13/04/2018,"THSS0120 FS,THSS0210 FS","THSS0120,THSS0210","THSS0310 FS,THSS0320 FS,THSS0230 FS","THSS0310,THSS0320,THSS0230",146,177,146,178,34,41,34,41,28,,"CCGT D1_Integrated Programme Schedule;CIVILS;CONSTRUCTION;Power Island - Turbine Hall Area;Steel Structure;Grid Line 1 to 5",2,3,0.0000111299,0.004069176,0.0077314344,1,1.0,0.0002455783,0.0136986301,0.0092307692,0.0168007812,0.0104438642,0.0244530245,0.0022421525,1.0,0.0673378458
1.4.2.11.11.3-13,THSS0230,"Turbine Hall GL.1-5 - Install main trusses to the steel columns at GL.1-5 /G, +37.26",7112,"CCGTD1_IPS",TT_Task,"58738",-,-,-,100,TK_Complete,19/05/2018,17/04/2018,21/05/2018,18/04/2018,"THSS0130 FS,THSS0220 FS","THSS0130,THSS0220","THSS0320 FS,THSS0330 FS","THSS0320,THSS0330",146,178,146,178,34,41,34,41,28,,"CCGT D1_Integrated Programme Schedule;CIVILS;CONSTRUCTION;Power Island - Turbine Hall Area;Steel Structure;Grid Line 1 to 5",2,2,0.0000094177,0.0034587996,0.0083418108,2,1.0,0.0002998936,0.0136986301,0.0061538462,0.0142161458,0.0088772846,0.0263835264,0.0044843049,1.0,0.089593407
1.4.2.11.11.3-14,THSS0240,"Turbine Hall GL.1-5 - Install main trusses to the steel columns at GL.1-5 /F, +37.26",7112,"CCGTD1_IPS",TT_Task,"58738",-,-,-,100,TK_Complete,26/05/2018,23/04/2018,28/05/2018,24/04/2018,"THSS0130 FS","THSS0130","THSS0330 FS,THSS0340 FS","THSS0330,THSS0340",147,179,147,179,34,41,34,41,28,,"CCGT D1_Integrated Programme Schedule;CIVILS;CONSTRUCTION;Power Island - Turbine Hall Area;Steel Structure;Grid Line 1 to 5",1,2,0.0000097834,0.003051882,0.0079348932,2,1.0,0.0002475905,0.0068493151,0.0061538462,0.0147682292,0.0078328982,0.0250965251,0.0044843049,1.0,0.068162308
1.4.2.11.11.3-15,THSS0250,"Turbine Hall GL.1-5 - Install main trusses to the steel columns at GL.1-5 /E, +37.26",7112,"CCGTD1_IPS",TT_Task,"58738",-,-,-,100,TK_Complete,04/06/2018,11/05/2018,05/06/2018,12/05/2018,"THSS0150 FS","THSS0150","THSS0340 FS,THSS0350 FS","THSS0340,THSS0350",148,182,148,182,34,42,34,42,29,,"CCGT D1_Integrated Programme Schedule;CIVILS;CONSTRUCTION;Power Island - Turbine Hall Area;Steel Structure;Grid Line 1 to 5",1,2,0.0000020805,0.0022380468,0.00508647,1,1.0,0.0001417088,0.0068493151,0.0061538462,0.003140625,0.0057441253,0.0160875161,0.0022421525,1.0,0.0247775083
1.4.2.11.11.3-16,THSS0260,"Turbine Hall GL.1-5 - Install main trusses to the steel columns at GL.1-5 /D, +37.26",7112,"CCGTD1_IPS",TT_Task,"58738",-,-,-,100,TK_Complete,06/06/2018,14/05/2018,07/06/2018,15/05/2018,"THSS0160 FS","THSS0160","THSS0350 FS,THSS0360 FS","THSS0350,THSS0360",149,182,149,182,34,42,34,42,30,,"CCGT D1_Integrated Programme Schedule;CIVILS;CONSTRUCTION;Power Island - Turbine Hall Area;Steel Structure;Grid Line 1 to 5",1,2,0.0000024118,0.0022380468,0.0054933876,1,1.0,0.0001773764,0.0068493151,0.0061538462,0.003640625,0.0057441253,0.0173745174,0.0022421525,1.0,0.0393922131
1.4.2.11.11.3-17,THSS0270,"Turbine Hall GL.1-5 - Install main trusses to the steel columns at GL.1-5 /C, +37.26",7112,"CCGTD1_IPS",TT_Task,"58738",-,-,-,100,TK_Complete,08/06/2018,16/05/2018,09/06/2018,17/05/2018,"THSS0170 FS","THSS0170","THSS0360 FS,THSS0370XX FS","THSS0360,THSS0370XX",149,182,149,182,34,42,34,42,30,,"CCGT D1_Integrated Programme Schedule;CIVILS;CONSTRUCTION;Power Island - Turbine Hall Area;Steel Structure;Grid Line 1 to 5",1,2,0.0000140842,0.0022380468,0.0207527976,1,1.0,0.0001723491,0.0068493151,0.0061538462,0.0212604167,0.0057441253,0.0656370656,0.0022421525,1.0,0.0373323201
1.4.2.11.11.3-18,THSS0280,"Turbine Hall GL.1-5 - Install main trusses to the steel columns at GL.1-5 /B, +37.26",7112,"CCGTD1_IPS",TT_Task,"58738",-,-,-,100,TK_Complete,16/06/2018,17/05/2018,19/06/2018,18/05/2018,"THSS0180 FS","THSS0180","THSS0370XX FS,THSS0380 FS,OHCN0007 FS","THSS0370XX,THSS0380,OHCN0007",150,182,150,183,35,42,35,42,30,,"CCGT D1_Integrated Programme Schedule;CIVILS;CONSTRUCTION;Power Island - Turbine Hall Area;Steel Structure;Grid Line 1 to 5",1,3,0.000023928,0.002034588,0.021363174,3,1.0,0.0003945093,0.0068493151,0.0092307692,0.0361197917,0.0052219321,0.0675675676,0.0067264574,1.0,0.1283620465
1.4.2.11.11.3-19,THSS0290,"Turbine Hall GL.1-5 - Install main beams to the steel columns at GL.1-5 /A, +37.26",7112,"CCGTD1_IPS",TT_Task,"58738",-,-,-,100,TK_Complete,19/06/2018,18/05/2018,20/06/2018,19/05/2018,"THSS0180 FS","THSS0180","THSS0380 FS","THSS0380",150,183,151,183,35,42,35,42,30,,"CCGT D1_Integrated Programme Schedule;CIVILS;CONSTRUCTION;Power Island - Turbine Hall Area;Steel Structure;Grid Line 1 to 5",1,1,0.0000015078,0.0006103764,0.021363174,1,1.0,0.0001856623,0.0068493151,0.0030769231,0.0022760417,0.0015665796,0.0675675676,0.0022421525,1.0,0.0427873488
1.4.2.11.11.3-20,THSS0110,"Turbine Hall GL.1-5 /H-G2/G1 (Bay 1a) - Connect erected columns by beams and bracing to +37.26",7112,"CCGTD1_IPS",TT_Task,"58738",-,-,-,100,TK_Complete,11/05/2018,14/04/2018,14/05/2018,17/04/2018,"THSS0010 FS,THSS0020 FS,THSS0030 FS","THSS0010,THSS0020,THSS0030","THSS0210 FS,THSS0120 FS","THSS0210,THSS0120",145,178,145,178,33,41,34,41,27,,"CCGT D1_Integrated Programme Schedule;CIVILS;CONSTRUCTION;Power Island - Turbine Hall Area;Steel Structure;Grid Line 1 to 5",3,2,0.0000167065,0.0052899288,0.007121058,3,1.0,0.0004211282,0.0205479452,0.0061538462,0.02521875,0.0135770235,0.0225225225,0.0067264574,1.0,0.1392690719
1.4.2.11.11.3-21,THSS0120,"Turbine Hall GL.1-5 /G2/G1-G (Bay 2a) - Connect erected columns by beams and bracing to +37.26",7112,"CCGTD1_IPS",TT_Task,"58738",-,-,-,100,TK_Complete,14/05/2018,17/04/2018,16/05/2018,19/04/2018,"THSS0020 FS,THSS0030 FS,THSS0110 FS","THSS0020,THSS0030,THSS0110","THSS0220 FS,THSS0130 FS","THSS0220,THSS0130",145,178,146,178,34,41,34,41,27,,"CCGT D1_Integrated Programme Schedule;CIVILS;CONSTRUCTION;Power Island - Turbine Hall Area;Steel Structure;Grid Line 1 to 5",3,2,0.0000207718,0.0048830112,0.0073245168,2,1.0,0.0004282119,0.0205479452,0.0061538462,0.0313554688,0.0125326371,0.0231660232,0.0044843049,1.0,0.1421716041
1.4.2.11.11.3-22,THSS0130,"Turbine Hall GL.1-5 /G-F (Bay 3a) - Connect erected columns by beams and bracing to +37.26",7112,"CCGTD1_IPS",TT_Task,"58738",-,-,-,100,TK_Complete,16/05/2018,19/04/2018,18/05/2018,21/04/2018,"THSS0030 FS,THSS0040 FS,THSS0120 FS","THSS0030,THSS0040,THSS0120","THSS0230 FS,THSS0240 FS","THSS0230,THSS0240",146,178,146,179,34,41,34,41,28,,"CCGT D1_Integrated Programme Schedule;CIVILS;CONSTRUCTION;Power Island - Turbine Hall Area;Steel Structure;Grid Line 1 to 5",3,2,0.0000162174,0.004069176,0.0077314344,2,1.0,0.000390535,0.0205479452,0.0061538462,0.0244804688,0.0104438642,0.0244530245,0.0044843049,1.0,0.1267335728
1.4.2.11.11.3-23,THSS0140,"Turbine Hall GL.1-5 /F-E (Bay 4a) - Connect erected columns by beams and bracing to +37.26",7112,"CCGTD1_IPS",TT_Task,"58738",-,-,-,100,TK_Complete,28/05/2018,05/05/2018,30/05/2018,08/05/2018,"THSS0040 FS,THSS0050 FS","THSS0040,THSS0050","THSS0150 FS","THSS0150",147,181,148,181,34,42,34,42,29,,"CCGT D1_Integrated Programme Schedule;CIVILS;CONSTRUCTION;Power Island - Turbine Hall Area;Steel Structure;Grid Line 1 to 5",2,1,0.0000033628,0.0059003052,0.0044760936,2,1.0,0.0001490161,0.0136986301,0.0030769231,0.0050761719,0.0151436031,0.0141570142,0.0044843049,1.0,0.0277716645
1.4.2.11.11.3-24,THSS0150,"Turbine Hall GL.1-5 /E-D (Bay 5a) - Connect erected columns by beams and bracing to +37.26",7112,"CCGTD1_IPS",TT_Task,"58738",-,-,-,100,TK_Complete,30/05/2018,08/05/2018,02/06/2018,10/05/2018,"THSS0050 FS,THSS0060 FS,THSS0140 FS","THSS0050,THSS0060,THSS0140","THSS0250 FS,THSS0160 FS","THSS0250,THSS0160",148,181,148,181,34,42,34,42,29,,"CCGT D1_Integrated Programme Schedule;CIVILS;CONSTRUCTION;Power Island - Turbine Hall Area;Steel Structure;Grid Line 1 to 5",3,2,0.0000077995,0.0056968464,0.0048830112,3,1.0,0.0002841504,0.0205479452,0.0061538462,0.0117734375,0.0146214099,0.0154440154,0.0067264574,1.0,0.083142673
1.4.2.11.11.3-25,THSS0160,"Turbine Hall GL.1-5 /D-C (Bay 6a) - Connect erected columns by beams and bracing to +37.26",7112,"CCGTD1_IPS",TT_Task,"58738",-,-,-,100,TK_Complete,02/06/2018,10/05/2018,05/06/2018,12/05/2018,"THSS0060 FS,THSS0070 FS,THSS0150 FS","THSS0060,THSS0070,THSS0150","THSS0260 FS,THSS0170 FS","THSS0260,THSS0170",148,181,148,182,34,42,34,42,29,,"CCGT D1_Integrated Programme Schedule;CIVILS;CONSTRUCTION;Power Island - Turbine Hall Area;Steel Structure;Grid Line 1 to 5",3,2,0.0000101233,0.00508647,0.0052899288,3,1.0,0.0003387217,0.0205479452,0.0061538462,0.01528125,0.0130548303,0.0167310167,0.0067264574,1.0,0.1055031777
1.4.2.11.11.3-26,THSS0170,"Turbine Hall GL.1-5 /C-B (Bay 7a) - Connect erected columns by beams and bracing to +37.26",7112,"CCGTD1_IPS",TT_Task,"58738",-,-,-,100,TK_Complete,05/06/2018,12/05/2018,07/06/2018,15/05/2018,"THSS0070 FS,THSS0080 FS,THSS0160 FS","THSS0070,THSS0080,THSS0160","THSS0270 FS,THSS0180 FS","THSS0270,THSS0180",148,182,149,182,34,42,34,42,29,,"CCGT D1_Integrated Programme Schedule;CIVILS;CONSTRUCTION;Power Island - Turbine Hall Area;Steel Structure;Grid Line 1 to 5",3,2,0.0000266641,0.004069176,0.0205493388,2,0.8,0.0003209359,0.0205479452,0.0061538462,0.04025,0.0104438642,0.064993565,0.0044843049,0.8,0.0982154826
1.4.2.11.11.3-27,THSS0180,"Turbine Hall GL.1-5 /B-A (Bay 8a) - Connect erected columns by beams and bracing to +37.26",7112,"CCGTD1_IPS",TT_Task,"58738",-,-,-,100,TK_Complete,14/06/2018,15/05/2018,16/06/2018,17/05/2018,"THSS0080 FS,THSS0090 FS,THSS0100 FS,THSS0170 FS","THSS0080,THSS0090,THSS0100,THSS0170","THSS0280 FS,THSS0290 FS","THSS0280,THSS0290",150,182,150,182,35,42,35,42,30,,"CCGT D1_Integrated Programme Schedule;CIVILS;CONSTRUCTION;Power Island - Turbine Hall Area;Steel Structure;Grid Line 1 to 5",4,2,0.0000336338,0.0024415056,0.0211597152,2,1.0,0.0004904304,0.0273972603,0.0061538462,0.0507708333,0.0062663185,0.0669240669,0.0044843049,1.0,0.1676655277
1.4.2.11.11.3-28,THSS0310,"Turbine Hall GL.1-5 /H-G2/G1 (Bay 1a) - Connect installed trusses by secondary beams and bracing",7112,"CCGTD1_IPS",TT_Task,"58738",-,-,-,100,TK_Complete,26/05/2018,23/04/2018,29/05/2018,25/04/2018,"THSS0210 FS,THSS0220 FS,THTT1200 FS","THSS0210,THSS0220,THTT1200","THRF0510 FS","THRF0510",147,179,147,179,34,41,34,41,29,,"CCGT D1_Integrated Programme Schedule;CIVILS;CONSTRUCTION;Power Island - Turbine Hall Area;Steel Structure;Grid Line 1 to 5",3,1,0.0000107443,0.0016276704,0.0195320448,3,1.0,0.0003189544,0.0205479452,0.0030769231,0.01621875,0.0041775457,0.0617760618,0.0067264574,1.0,0.0974035683
1.4.2.11.11.3-29,THSS0320,"Turbine Hall GL.1-5 /G2/G1-G (Bay 2a) - Connect installed trusses by secondary beams and bracing",7112,"CCGTD1_IPS",TT_Task,"58738",-,-,-,100,TK_Complete,26/05/2018,23/04/2018,29/05/2018,25/04/2018,"THSS0220 FS,THSS0230 FS,THTT2200 FS","THSS0220,THSS0230,THTT2200","THSS0420 FS","THSS0420",147,179,147,179,34,41,34,41,29,,"CCGT D1_Integrated Programme Schedule;CIVILS;CONSTRUCTION;Power Island - Turbine Hall Area;Steel Structure;Grid Line 1 to 5",3,1,0.0000087155,0.003051882,0.0201424212,3,1.0,0.0004458437,0.0205479452,0.0030769231,0.01315625,0.0078328982,0.0637065637,0.0067264574,1.0,0.1493962052
1.4.2.11.11.3-30,THSS0330,"Turbine Hall GL.1-5 /G-F (Bay 3a) - Connect installed trusses by secondary beams and bracing",7112,"CCGTD1_IPS",TT_Task,"58738",-,-,-,100,TK_Complete,29/05/2018,25/04/2018,31/05/2018,27/04/2018,"THSS0230 FS,THSS0240 FS,THTT3200 FS","THSS0230,THSS0240,THTT3200","THSS0430 FS,THSS0440 FS","THSS0430,THSS0440",147,179,148,180,34,41,34,42,29,,"CCGT D1_Integrated Programme Schedule;CIVILS;CONSTRUCTION;Power Island - Turbine Hall Area;Steel Structure;Grid Line 1 to 5",3,2,0.0000384435,0.0026449644,0.02034588,2,1.0,0.0004424751,0.0205479452,0.0061538462,0.05803125,0.0067885117,0.0643500644,0.0044843049,1.0,0.1480159016
1.4.2.11.11.3-31,THSS0340,"Turbine Hall GL.1-5 /F-E (Bay 4a) - Connect installed trusses by secondary beams and bracing",7112,"CCGTD1_IPS",TT_Task,"58738",-,-,-,100,TK_Complete,06/06/2018,14/05/2018,08/06/2018,16/05/2018,"THSS0240 FS,THSS0250 FS","THSS0240,THSS0250","THSS0500 FS","THSS0500",149,182,149,182,34,42,34,42,30,,"CCGT D1_Integrated Programme Schedule;CIVILS;CONSTRUCTION;Power Island - Turbine Hall Area;Steel Structure;Grid Line 1 to 5",2,0,0.0,0.0,0.009155646,2,1.0,0.0002349339,0.0136986301,0.0,0.0,0.0,0.028957529,0.0044843049,1.0,0.0629762927
1.4.2.11.11.3-32,THSS0350,"Turbine Hall GL.1-5 /E-D (Bay 5a) - Connect installed trusses by secondary beams and bracing",7112,"CCGTD1_IPS",TT_Task,"58738",-,-,-,100,TK_Complete,08/06/2018,16/05/2018,11/06/2018,18/05/2018,"THSS0250 FS,THSS0260 FS","THSS0250,THSS0260","THSS0450 FS,THSS0500 FF","THSS0450,THSS0500",149,182,149,183,34,42,34,42,30,,"CCGT D1_Integrated Programme Schedule;CIVILS;CONSTRUCTION;Power Island - Turbine Hall Area;Steel Structure;Grid Line 1 to 5",2,1,0.0000016286,0.0018311292,0.0059003052,3,1.0,0.000244278,0.0136986301,0.0030769231,0.0024583333,0.0046997389,0.0186615187,0.0067264574,1.0,0.0668050447
1.4.2.11.11.3-33,THSS0360,"Turbine Hall GL.1-5 /D-C (Bay 6a) - Connect installed trusses by secondary beams and bracing",7112,"CCGTD1_IPS",TT_Task,"58738",-,-,-,100,TK_Complete,11/06/2018,18/05/2018,13/06/2018,21/05/2018,"THSS0260 FS,THSS0270 FS","THSS0260,THSS0270","THSS0460 FS,THSS0500 FF","THSS0460,THSS0500",149,183,150,183,34,42,35,42,30,,"CCGT D1_Integrated Programme Schedule;CIVILS;CONSTRUCTION;Power Island - Turbine Hall Area;Steel Structure;Grid Line 1 to 5",2,1,0.0000044647,0.0014242116,0.0211597152,2,0.8,0.0002884483,0.0136986301,0.0030769231,0.0067395833,0.0036553525,0.0669240669,0.0044843049,0.8,0.0849037396
1.4.2.11.11.3-34,THSS0370XX,"Turbine Hall GL.1-5 /C-B (Bay 7a) - Connect installed trusses by secondary beams and bracing [Deferred Works]",7112,"CCGTD1_IPS",TT_Task,"58738",-,-,-,100,TK_Complete,02/01/2020,19/05/2018,02/01/2020,19/05/2018,"THSS0270 FS,THSS0280 FS","THSS0270,THSS0280","THSS0470XX FS,THSS0500 FF","THSS0470XX,THSS0500",231,183,231,183,53,42,53,42,87,,"CCGT D1_Integrated Programme Schedule;CIVILS;CONSTRUCTION;Power Island - Turbine Hall Area;Steel Structure;Grid Line 1 to 5",2,1,0.0000088604,0.0004069176,0.0217700916,0,1.0,0.0000812387,0.0136986301,0.0030769231,0.013375,0.0010443864,0.0688545689,0.0,1.0,0.0
1.4.2.11.11.3-35,THSS0380,"Turbine Hall GL.1-5 /B-A (Bay 8a) - Connect installed trusses by secondary beams and bracing",7112,"CCGTD1_IPS",TT_Task,"58738",-,-,-,100,TK_Complete,21/06/2018,21/05/2018,23/06/2018,24/05/2018,"THSS0280 FS,THSS0290 FS,THTT5130 FS","THSS0280,THSS0290,THTT5130","THRF0580 FS,THSS0500 FF,THPD0020 FS","THRF0580,THSS0500,THPD0020",151,183,151,183,35,42,35,42,31,,"CCGT D1_Integrated Programme Schedule;CIVILS;CONSTRUCTION;Power Island - Turbine Hall Area;Steel Structure;Grid Line 1 to 5",3,1,0.0000052307,0.0004069176,0.022380468,2,1.0,0.0007081012,0.0205479452,0.0030769231,0.0078958333,0.0010443864,0.0707850708,0.0044843049,1.0,0.2568557248
1.4.2.11.11.3-36,THSS0420,"Turbine Hall GL.2-4 /G2/G1-G (Bay 2a) - Install upper roof steel structure",7112,"CCGTD1_IPS",TT_Task,"58738",-,-,-,100,TK_Complete,30/05/2018,26/04/2018,31/05/2018,27/04/2018,"THSS0320 FS","THSS0320","THRF0520 FS,THSS0430 FS","THRF0520,THSS0430",148,179,148,180,34,41,34,42,29,,"CCGT D1_Integrated Programme Schedule;CIVILS;CONSTRUCTION;Power Island - Turbine Hall Area;Steel Structure;Grid Line 1 to 5",1,2,0.0000051962,0.0028484232,0.02034588,1,1.0,0.0004608657,0.0068493151,0.0061538462,0.00784375,0.007310705,0.0643500644,0.0022421525,1.0,0.1555514213
1.4.2.11.11.3-37,THSS0430,"Turbine Hall GL.2-4 /G-F (Bay 3a) - Install upper roof steel structure",7112,"CCGTD1_IPS",TT_Task,"58738",-,-,-,100,TK_Complete,02/06/2018,28/04/2018,04/06/2018,30/04/2018,"THSS0330 FS,THSS0420 FS","THSS0330,THSS0420","THRF0530 FS,THSS0440 FS","THRF0530,THSS0440",148,180,148,180,34,42,34,42,29,,"CCGT D1_Integrated Programme Schedule;CIVILS;CONSTRUCTION;Power Island - Turbine Hall Area;Steel Structure;Grid Line 1 to 5",2,2,0.0000051962,0.0024415056,0.0215666328,2,1.0,0.000463282,0.0136986301,0.0061538462,0.00784375,0.0062663185,0.0682110682,0.0044843049,1.0,0.156541502
1.4.2.11.11.3-38,THSS0440,"Turbine Hall GL.2-4 /F-E (Bay 4a) - Install upper roof steel structure",7112,"CCGTD1_IPS",TT_Task,"58738",-,-,-,100,TK_Complete,05/06/2018,02/05/2018,06/06/2018,03/05/2018,"THSS0430 FS,THSS0330 FS","THSS0430,THSS0330","THRF0540 FS,THSS0500 FS,THSS0450 FS","THRF0540,THSS0500,THSS0450",148,180,149,180,34,42,34,42,30,,"CCGT D1_Integrated Programme Schedule;CIVILS;CONSTRUCTION;Power Island - Turbine Hall Area;Steel Structure;Grid Line 1 to 5",2,2,0.0000304526,0.002034588,0.0217700916,1,1.0,0.0003384536,0.0136986301,0.0061538462,0.04596875,0.0052219321,0.0688545689,0.0022421525,1.0,0.1053933132
1.4.2.11.11.3-39,THSS0450,"Turbine Hall GL.2-4 /E-D (Bay 5a) - Install upper roof steel structure",7112,"CCGTD1_IPS",TT_Task,"58738",-,-,-,100,TK_Complete,12/06/2018,19/05/2018,13/06/2018,21/05/2018,"THSS0350 FS,THSS0440 FS","THSS0350,THSS0440","THRF0550 FS,THSS0500 FF,THSS0460 FS","THRF0550,THSS0500,THSS0460",149,183,150,183,34,42,35,42,30,,"CCGT D1_Integrated Programme Schedule;CIVILS;CONSTRUCTION;Power Island - Turbine Hall Area;Steel Structure;Grid Line 1 to 5",2,2,0.0000206485,0.0016276704,0.0238046796,1,1.0,0.0003614253,0.0136986301,0.0061538462,0.0311692708,0.0041775457,0.0752895753,0.0022421525,1.0,0.1148059252
1.4.2.11.11.3-40,THSS0460,"Turbine Hall GL.2-4 /D-C (Bay 6a) - Install upper roof steel structure",7112,"CCGTD1_IPS",TT_Task,"58738",-,-,-,100,TK_Complete,14/06/2018,23/05/2018,15/06/2018,24/05/2018,"THSS0360 FS,THSS0450 FS","THSS0360,THSS0450","THRF0560 FS,THSS0500 FF,THEL0020 FS","THRF0560,THSS0500,THEL0020",150,183,150,183,35,42,35,42,30,,"CCGT D1_Integrated Programme Schedule;CIVILS;CONSTRUCTION;Power Island - Turbine Hall Area;Steel Structure;Grid Line 1 to 5",2,2,0.0000154368,0.0012207528,0.0274669379,1,1.0,0.0004296462,0.0136986301,0.0061538462,0.0233020833,0.0031331593,0.0868725869,0.0022421525,1.0,0.14275929
1.4.2.11.11.3-41,THSS0470XX,"Turbine Hall GL.2-4 /C-B (Bay 7a) - Install upper roof steel structure [Deferred Works]",7112,"CCGTD1_IPS",TT_Task,"58738",-,-,-,100,TK_Complete,02/01/2020,19/05/2018,02/01/2020,19/05/2018,"THSS0370XX FS","THSS0370XX","THRF0570XX FS,THSS0500 FF","THRF0570XX,THSS0500",231,183,231,183,53,42,53,42,87,,"CCGT D1_Integrated Programme Schedule;CIVILS;CONSTRUCTION;Power Island - Turbine Hall Area;Steel Structure;Grid Line 1 to 5",1,1,0.0000044716,0.0002034588,0.0219735504,0,1.0,0.0000812387,0.0068493151,0.0030769231,0.00675,0.0005221932,0.0694980695,0.0,1.0,0.0
1.4.2.11.12,58730,"Foundation and Substructure",7112,"CCGTD1_IPS",WBS,"58729",,,,100,Complete,04/08/2017,04/08/2017,10/12/2018,22/11/2018,,,,,105,142,175,209,24,33,41,48,,,"CCGT D1_Integrated Programme Schedule;CIVILS;CONSTRUCTION;Power Island - Turbine Hall Area"
1.4.2.11.12.1,58736,"Pipe Trench for Chemical Contaminated Drainage System",7112,"CCGTD1_IPS",WBS,"58730",,,,100,Complete,23/04/2018,26/02/2018,12/05/2018,23/03/2018,,,,,142,171,145,175,33,40,33,40,,,"CCGT D1_Integrated Programme Schedule;CIVILS;CONSTRUCTION;Power Island - Turbine Hall Area;Foundation and Substructure"
1.4.2.11.12.2,58735,"Condensate Trench",7112,"CCGTD1_IPS",WBS,"58730",,,,100,Complete,14/05/2018,22/03/2018,11/06/2018,30/09/2018,,,,,145,174,149,202,34,40,34,47,,,"CCGT D1_Integrated Programme Schedule;CIVILS;CONSTRUCTION;Power Island - Turbine Hall Area;Foundation and Substructure"
1.4.2.11.12.3,58734,"Condensate Polishing Pit",7112,"CCGTD1_IPS",WBS,"58730",,,,100,Complete,26/02/2018,15/01/2018,28/11/2018,09/09/2018,,,,,134,165,174,199,31,38,40,46,,,"CCGT D1_Integrated Programme Schedule;CIVILS;CONSTRUCTION;Power Island - Turbine Hall Area;Foundation and Substructure"
1.4.2.11.12.3-1,THPP0010,"Cond.Polishing Pit - Further excavate from +4.1 mPD to the pit formation level",7112,"CCGTD1_IPS",TT_Task,"58734",-,-,-,100,TK_Complete,26/02/2018,15/01/2018,02/03/2018,27/01/2018,"THCP0010 FF","THCP0010","THPP0050 FS","THPP0050",134,165,135,167,31,38,31,39,19,,"CCGT D1_Integrated Programme Schedule;CIVILS;CONSTRUCTION;Power Island - Turbine Hall Area;Foundation and Substructure;Condensate Polishing Pit",1,1,0.0000211574,0.0189216684,0.0138351984,4,0.2,0.0003022438,0.0068493151,0.0030769231,0.0319375,0.0485639687,0.0437580438,0.0089686099,0.2,0.0905563961
1.4.2.11.12.3-2,THPP0070,"Cond.Polishing Pit - Vertical blinding to the profile of pile caps, ground beams and shallow pits",7112,"CCGTD1_IPS",TT_Task,"58734",-,-,-,100,TK_Complete,14/05/2018,12/04/2018,17/05/2018,31/05/2018,"THPP0060 FS","THPP0060","THPP0075 FS","THPP0075",145,177,146,184,34,41,34,43,27,,"CCGT D1_Integrated Programme Schedule;CIVILS;CONSTRUCTION;Power Island - Turbine Hall Area;Foundation and Substructure;Condensate Polishing Pit",1,1,0.0000455857,0.018311292,0.0146490336,3,0.0,0.000440663,0.0068493151,0.0030769231,0.0688125,0.046997389,0.0463320463,0.0067264574,0.0,0.1472734316
1.4.2.11.12.3-3,THPP0050,"Cond.Polishing Pit - Trim pile and prepare pile head",7112,"CCGTD1_IPS",TT_Task,"58734",-,-,-,100,TK_Complete,03/03/2018,29/01/2018,05/03/2018,21/05/2018,"THPP0010 FS,THCP0050 SS","THPP0010,THCP0050","THPP0060 FF","THPP0060",135,167,135,183,31,39,31,42,21,,"CCGT D1_Integrated Programme Schedule;CIVILS;CONSTRUCTION;Power Island - Turbine Hall Area;Foundation and Substructure;Condensate Polishing Pit",2,1,0.0000439295,0.0187182096,0.014242116,2,0.0,0.0003987288,0.0136986301,0.0030769231,0.0663125,0.0480417755,0.045045045,0.0044843049,0.0,0.130090971
1.4.2.11.12.3-4,THPP0060,"Cond.Polishing Pit - Capping plate and rebar starter",7112,"CCGTD1_IPS",TT_Task,"58734",-,-,-,100,TK_Complete,05/03/2018,30/01/2018,07/03/2018,22/05/2018,"THPP0050 FF","THPP0050","THPP0070 FS","THPP0070",135,167,136,183,31,39,31,42,21,,"CCGT D1_Integrated Programme Schedule;CIVILS;CONSTRUCTION;Power Island - Turbine Hall Area;Foundation and Substructure;Condensate Polishing Pit",1,1,0.000044799,0.0185147508,0.0144455748,2,0.0,0.0004237369,0.0068493151,0.0030769231,0.067625,0.0475195822,0.0456885457,0.0044843049,0.0,0.1403379604
1.4.2.11.12.3-5,THPP0080,"Cond.Polishing Pit - Fix rebar for pile caps, ground beams and shallow pits",7112,"CCGTD1_IPS",TT_Task,"58734",-,-,-,100,TK_Complete,01/06/2018,03/05/2018,04/06/2018,22/06/2018,"THPP0075 SS","THPP0075","THPP0090 FS","THPP0090",148,180,148,188,34,42,34,43,29,,"CCGT D1_Integrated Programme Schedule;CIVILS;CONSTRUCTION;Power Island - Turbine Hall Area;Foundation and Substructure;Condensate Polishing Pit",1,1,0.0000469106,0.0179043744,0.0150559512,3,0.0,0.0001503957,0.0068493151,0.0030769231,0.0708125,0.0459530026,0.0476190476,0.0067264574,0.0,0.0283369572
1.4.2.11.12.3-6,THPP0090,"Cond.Polishing Pit - Close formwork",7112,"CCGTD1_IPS",TT_Task,"58734",-,-,-,100,TK_Complete,04/06/2018,23/05/2018,04/06/2018,30/06/2018,"THPP0080 FS","THPP0080","THPP0100 FS","THPP0100",148,183,148,189,34,42,34,44,29,,"CCGT D1_Integrated Programme Schedule;CIVILS;CONSTRUCTION;Power Island - Turbine Hall Area;Foundation and Substructure;Condensate Polishing Pit",1,1,0.0000474489,0.0177009156,0.01525941,0,0.0,0.0000812387,0.0068493151,0.0030769231,0.071625,0.0454308094,0.0482625483,0.0,0.0,0.0
1.4.2.11.12.3-7,THPP0100,"Cond.Polishing Pit - Pour caps, beams and shallow pits to the underside level of pit slab",7112,"CCGTD1_IPS",TT_Task,"58734",-,-,-,100,TK_Complete,05/06/2018,24/05/2018,05/06/2018,01/07/2018,"THPP0090 FS","THPP0090","THPP0110 FS","THPP0110",148,183,148,189,34,42,34,44,29,,"CCGT D1_Integrated Programme Schedule;CIVILS;CONSTRUCTION;Power Island - Turbine Hall Area;Foundation and Substructure;Condensate Polishing Pit",1,1,0.0000479043,0.0174974568,0.0154628688,0,0.0,0.0000812387,0.0068493151,0.0030769231,0.0723125,0.0449086162,0.0489060489,0.0,0.0,0.0
1.4.2.11.12.3-8,THPP0110,"Cond.Polishing Pit - Prepare CJ",7112,"CCGTD1_IPS",TT_Task,"58734",-,-,-,100,TK_Complete,07/06/2018,25/05/2018,07/06/2018,04/07/2018,"THPP0100 FS,THPP0130 FS","THPP0100,THPP0130","THPP0140 FS","THPP0140",149,184,149,189,34,42,34,44,30,,"CCGT D1_Integrated Programme Schedule;CIVILS;CONSTRUCTION;Power Island - Turbine Hall Area;Foundation and Substructure;Condensate Polishing Pit",2,1,0.0000553156,0.017293998,0.0160732452,0,0.0,0.0000812387,0.0136986301,0.0030769231,0.0835,0.044386423,0.0508365508,0.0,0.0,0.0
1.4.2.11.12.3-9,THPP0120,"Cond.Polishing Pit - Fix pit slab rebar",7112,"CCGTD1_IPS",TT_Task,"58734",-,-,-,100,TK_Complete,05/07/2018,22/05/2018,06/07/2018,22/06/2018,"","","THPP0130 FS","THPP0130",153,183,153,188,35,42,35,43,32,,"CCGT D1_Integrated Programme Schedule;CIVILS;CONSTRUCTION;Power Island - Turbine Hall Area;Foundation and Substructure;Condensate Polishing Pit",0,1,0.0,0.0177009156,0.0,1,0.0,0.0000812387,0.0,0.0030769231,0.0,0.0454308094,0.0,0.0022421525,0.0,0.0
1.4.2.11.12.3-10,THPP0130,"Cond.Polishing Pit - Pour pit slab",7112,"CCGTD1_IPS",TT_Task,"58734",-,-,-,100,TK_Complete,30/06/2018,24/05/2018,30/06/2018,01/07/2018,"THPP0120 FS","THPP0120","THPP0110 FS","THPP0110",152,183,152,189,35,42,35,44,31,,"CCGT D1_Integrated Programme Schedule;CIVILS;CONSTRUCTION;Power Island - Turbine Hall Area;Foundation and Substructure;Condensate Polishing Pit",1,1,0.0000035607,0.0174974568,0.0002034588,0,0.0,0.0000812387,0.0068493151,0.0030769231,0.005375,0.0449086162,0.0006435006,0.0,0.0,0.0
1.4.2.11.12.3-11,THPP0140,"Cond.Polishing Pit - Erect wall formwork",7112,"CCGTD1_IPS",TT_Task,"58734",-,-,-,100,TK_Complete,03/07/2018,12/06/2018,07/07/2018,18/07/2018,"THPP0110 FS","THPP0110","THPP0150 FS","THPP0150",152,186,153,191,35,43,35,44,32,,"CCGT D1_Integrated Programme Schedule;CIVILS;CONSTRUCTION;Power Island - Turbine Hall Area;Foundation and Substructure;Condensate Polishing Pit",1,1,0.0000555226,0.0170905392,0.016276704,4,0.0,0.0001503957,0.0068493151,0.0030769231,0.0838125,0.0438642298,0.0514800515,0.0089686099,0.0,0.0283369572
1.4.2.11.12.3-12,THPP0150,"Cond.Polishing Pit - Fix wall and column rebar",7112,"CCGTD1_IPS",TT_Task,"58734",-,-,-,100,TK_Complete,26/06/2018,09/06/2018,17/07/2018,24/07/2018,"THPP0140 FS","THPP0140","THPP0160 FS","THPP0160",151,186,154,192,35,43,36,44,31,,"CCGT D1_Integrated Programme Schedule;CIVILS;CONSTRUCTION;Power Island - Turbine Hall Area;Foundation and Substructure;Condensate Polishing Pit",1,1,0.0000556469,0.0168870804,0.0164801628,21,0.0,0.000209244,0.0068493151,0.0030769231,0.084,0.0433420366,0.0521235521,0.0470852018,0.0,0.0524499399
1.4.2.11.12.3-13,THPP0160,"Cond.Polishing Pit - Close wall formwork",7112,"CCGTD1_IPS",TT_Task,"58734",-,-,-,100,TK_Complete,30/06/2018,12/06/2018,19/07/2018,04/08/2018,"THPP0150 FS","THPP0150","THPP0170 FF","THPP0170",152,186,155,194,35,43,36,45,31,,"CCGT D1_Integrated Programme Schedule;CIVILS;CONSTRUCTION;Power Island - Turbine Hall Area;Foundation and Substructure;Condensate Polishing Pit",1,1,0.0000556883,0.0166836216,0.0166836216,19,0.0,0.0002593786,0.0068493151,0.0030769231,0.0840625,0.0428198433,0.0527670528,0.0426008969,0.0,0.0729924654
1.4.2.11.12.3-14,THPP0170,"Cond.Polishing Pit - Pour walls and columns to the underside of Turbine Hall ground slab",7112,"CCGTD1_IPS",TT_Task,"58734",-,-,-,100,TK_Complete,26/07/2018,01/07/2018,10/08/2018,07/08/2018,"THPP0160 FF","THPP0160","THPP0180 FS,THCT0010 FF","THPP0180,THCT0010",156,189,158,194,36,44,36,45,33,,"CCGT D1_Integrated Programme Schedule;CIVILS;CONSTRUCTION;Power Island - Turbine Hall Area;Foundation and Substructure;Condensate Polishing Pit",1,1,0.0000556469,0.0164801628,0.0168870804,15,0.0,0.0003021254,0.0068493151,0.0030769231,0.084,0.0422976501,0.0534105534,0.033632287,0.0,0.0905078876
1.4.2.11.12.3-15,THPP0075,"Cond.Polishing Pit - Install waterproofing",7112,"CCGTD1_IPS",TT_Task,"58734",-,-,-,100,TK_Complete,18/05/2018,16/04/2018,18/05/2018,26/07/2018,"THPP0070 FS","THPP0070","THPP0080 SS","THPP0080",146,178,146,192,34,41,34,45,28,,"CCGT D1_Integrated Programme Schedule;CIVILS;CONSTRUCTION;Power Island - Turbine Hall Area;Foundation and Substructure;Condensate Polishing Pit",1,1,0.0000462896,0.0181078332,0.0148524924,0,0.0,0.0000812387,0.0068493151,0.0030769231,0.069875,0.0464751958,0.046975547,0.0,0.0,0.0
1.4.2.11.12.3-16,THPP0180,"Cond.Polishing Pit - Curing",7112,"CCGTD1_IPS",TT_Task,"58734",-,-,-,100,TK_Complete,09/09/2018,08/08/2018,11/09/2018,10/08/2018,"THPP0170 FS","THPP0170","THPP0190 FF,BDWK0040 FS","THPP0190,BDWK0040",162,194,162,195,37,45,38,45,36,,"CCGT D1_Integrated Programme Schedule;CIVILS;CONSTRUCTION;Power Island - Turbine Hall Area;Foundation and Substructure;Condensate Polishing Pit",1,2,0.0000555226,0.016276704,0.0170905392,2,1.0,0.000338598,0.0068493151,0.0061538462,0.0838125,0.0417754569,0.0540540541,0.0044843049,1.0,0.1054524737
1.4.2.11.12.3-17,THPP0190,"Cond.Polishing Pit -  Apply waterproofing to the external face of pit wall",7112,"CCGTD1_IPS",TT_Task,"58734",-,-,-,100,TK_Complete,10/09/2018,09/08/2018,11/09/2018,10/08/2018,"THPP0180 FF","THPP0180","THPP0200 FS","THPP0200",162,194,162,195,37,45,38,45,36,,"CCGT D1_Integrated Programme Schedule;CIVILS;CONSTRUCTION;Power Island - Turbine Hall Area;Foundation and Substructure;Condensate Polishing Pit",1,1,0.0000510096,0.0158697864,0.017293998,1,1.0,0.0001224352,0.0068493151,0.0030769231,0.077,0.0407310705,0.0546975547,0.0022421525,1.0,0.0168801935
1.4.2.11.12.3-18,THPP0200,"Cond.Polishing Pit - Backfill againt basement wall",7112,"CCGTD1_IPS",TT_Task,"58734",-,-,-,100,TK_Complete,26/11/2018,07/09/2018,28/11/2018,09/09/2018,"THPP0190 FS,THCP0200 FF","THPP0190,THCP0200","THGF9010 FF,THGF5020 FF,THGF5010 FF","THGF9010,THGF5020,THGF5010",173,199,174,199,40,46,40,46,40,,"CCGT D1_Integrated Programme Schedule;CIVILS;CONSTRUCTION;Power Island - Turbine Hall Area;Foundation and Substructure;Condensate Polishing Pit",2,3,0.0001049175,0.0156663276,0.0209562564,2,1.0,0.0002228209,0.0136986301,0.0092307692,0.158375,0.0402088773,0.0662805663,0.0044843049,1.0,0.0580130286
1.4.2.11.12.4,58733,"Condensate Pit",7112,"CCGTD1_IPS",WBS,"58730",,,,100,Complete,28/09/2017,30/09/2017,10/12/2018,22/11/2018,,,,,113,150,175,209,26,35,41,48,,,"CCGT D1_Integrated Programme Schedule;CIVILS;CONSTRUCTION;Power Island - Turbine Hall Area;Foundation and Substructure"
1.4.2.11.12.4-1,THCP0010,"Condensate Pit - Further excavate from +4.1 mPD to the pit formation level",7112,"CCGTD1_IPS",TT_Task,"58733",-,-,-,100,TK_Complete,26/02/2018,15/01/2018,27/02/2018,27/01/2018,"THTT0010 FS,THTT1060 FS,THTT1120 FS,THTT2060 FS,THTT2120 FS,THTT3060 FS,THTT3120 FS,THTT4060 FS,THTT5060 FS,THTT5120 FS,THCP0020 FS","THTT0010,THTT1060,THTT1120,THTT2060,THTT2120,THTT3060,THTT3120,THTT4060,THTT5060,THTT5120,THCP0020","THCP0050 FS,THPP0010 FF,THGF1040 FS","THCP0050,THPP0010,THGF1040",134,165,134,167,31,38,31,39,19,,"CCGT D1_Integrated Programme Schedule;CIVILS;CONSTRUCTION;Power Island - Turbine Hall Area;Foundation and Substructure;Condensate Pit",11,3,0.0001607093,0.0246185148,0.0136317396,1,0.0,0.0005184101,0.0753424658,0.0092307692,0.24259375,0.0631853786,0.0431145431,0.0022421525,0.0,0.1791301423
1.4.2.11.12.4-2,THCP0020,"Condensate Pit - Sheet piling for the sump pit",7112,"CCGTD1_IPS",TT_Task,"58733",-,-,-,100,TK_Complete,27/12/2017,21/12/2017,08/01/2018,14/01/2018,"THCP0015 FS","THCP0015","THCP0010 FS","THCP0010",126,161,127,165,29,37,29,38,16,,"CCGT D1_Integrated Programme Schedule;CIVILS;CONSTRUCTION;Power Island - Turbine Hall Area;Foundation and Substructure;Condensate Pit",1,1,0.0000526244,0.0248219736,0.0032553408,12,0.0,0.0004751745,0.0068493151,0.0030769231,0.0794375,0.0637075718,0.0102960103,0.0269058296,0.0,0.1614144403
1.4.2.11.12.4-3,THCP0030,"Condensate Pit - Excavation and construct the sump pit to the underside level of pit slab",7112,"CCGTD1_IPS",TT_Task,"58733",-,-,-,100,TK_Complete,26/11/2018,08/10/2018,04/12/2018,09/11/2018,"THCP0170 FS,POW_BA58_4 FS","THCP0170,POW_BA58_4","","",173,203,174,208,40,47,40,48,40,,"CCGT D1_Integrated Programme Schedule;CIVILS;CONSTRUCTION;Power Island - Turbine Hall Area;Foundation and Substructure;Condensate Pit",2,0,0.0,0.0,0.0170905392,8,0.0,0.0002057214,0.0136986301,0.0,0.0,0.0,0.0540540541,0.0179372197,0.0,0.0510065229
1.4.2.11.12.4-4,THCP0040,"Condensate Pit - Trim sheet pile head (pump pit)",7112,"CCGTD1_IPS",TT_Task,"58733",-,-,-,100,TK_Complete,05/12/2018,25/06/2018,06/12/2018,05/07/2018,"","","THCP0070 FF","THCP0070",175,188,175,189,40,43,40,44,42,,"CCGT D1_Integrated Programme Schedule;CIVILS;CONSTRUCTION;Power Island - Turbine Hall Area;Foundation and Substructure;Condensate Pit",0,1,0.0,0.0207527976,0.0,1,0.2,0.0000812387,0.0,0.0030769231,0.0,0.0532637076,0.0,0.0022421525,0.2,0.0
1.4.2.11.12.4-5,THCP0070,"Condensate Pit - Vertical blinding to the profile of pile caps, ground beams and shallow pits",7112,"CCGTD1_IPS",TT_Task,"58733",-,-,-,100,TK_Complete,12/05/2018,13/03/2018,15/05/2018,14/07/2018,"THCP0060 FS,THCP0040 FF","THCP0060,THCP0040","THCP0075 FS","THCP0075",145,173,145,191,33,40,34,44,27,,"CCGT D1_Integrated Programme Schedule;CIVILS;CONSTRUCTION;Power Island - Turbine Hall Area;Foundation and Substructure;Condensate Pit",2,1,0.0001228454,0.0205493388,0.0144455748,3,0.0,0.0002695401,0.0136986301,0.0030769231,0.1854375,0.0527415144,0.0456885457,0.0067264574,0.0,0.0771561312
1.4.2.11.12.4-6,THCP0050,"Condensate Pit - Trim pile and prepare pile head",7112,"CCGTD1_IPS",TT_Task,"58733",-,-,-,100,TK_Complete,28/02/2018,29/01/2018,01/03/2018,16/06/2018,"THCP0010 FS","THCP0010","THCP0060 FF,THPP0050 SS","THCP0060,THPP0050",135,167,135,187,31,39,31,43,19,,"CCGT D1_Integrated Programme Schedule;CIVILS;CONSTRUCTION;Power Island - Turbine Hall Area;Foundation and Substructure;Condensate Pit",1,2,0.0001371297,0.0240081384,0.0138351984,1,0.0,0.00013649,0.0068493151,0.0061538462,0.207,0.061618799,0.0437580438,0.0022421525,0.0,0.022639099
1.4.2.11.12.4-7,THCP0060,"Condensate Pit - Capping plate and rebar starter",7112,"CCGTD1_IPS",TT_Task,"58733",-,-,-,100,TK_Complete,01/03/2018,30/01/2018,03/03/2018,19/06/2018,"THCP0050 FF","THCP0050","THCP0070 FS","THCP0070",135,167,135,187,31,39,31,43,21,,"CCGT D1_Integrated Programme Schedule;CIVILS;CONSTRUCTION;Power Island - Turbine Hall Area;Foundation and Substructure;Condensate Pit",1,1,0.0001173387,0.0207527976,0.0140386572,2,0.0,0.0001395677,0.0068493151,0.0030769231,0.177125,0.0532637076,0.0444015444,0.0044843049,0.0,0.0239002047
1.4.2.11.12.4-8,THCP0080,"Condensate Pit - Fix rebar for pile caps, ground beams and shallow pits",7112,"CCGTD1_IPS",TT_Task,"58733",-,-,-,100,TK_Complete,18/05/2018,21/03/2018,21/05/2018,06/08/2018,"THCP0075 FS","THCP0075","THCP0090 FF,THCP0120 FF","THCP0090,THCP0120",146,174,146,194,34,40,34,45,28,,"CCGT D1_Integrated Programme Schedule;CIVILS;CONSTRUCTION;Power Island - Turbine Hall Area;Foundation and Substructure;Condensate Pit",1,2,0.000125164,0.0201424212,0.0148524924,3,0.0,0.0001503957,0.0068493151,0.0061538462,0.1889375,0.0516971279,0.046975547,0.0067264574,0.0,0.0283369572
1.4.2.11.12.4-9,THCP0090,"Condensate Pit - Close formwork",7112,"CCGTD1_IPS",TT_Task,"58733",-,-,-,100,TK_Complete,24/05/2018,16/04/2018,24/05/2018,06/08/2018,"THCP0080 FF","THCP0080","THCP0100 FS","THCP0100",147,178,147,194,34,41,34,45,28,,"CCGT D1_Integrated Programme Schedule;CIVILS;CONSTRUCTION;Power Island - Turbine Hall Area;Foundation and Substructure;Condensate Pit",1,1,0.0000061278,0.0197355036,0.0150559512,0,0.0,0.0000812387,0.0068493151,0.0030769231,0.00925,0.0506527415,0.0476190476,0.0,0.0,0.0
1.4.2.11.12.4-10,THCP0100,"Condensate Pit - Pour caps, beams and shallow pits to the underside level of pit slab",7112,"CCGTD1_IPS",TT_Task,"58733",-,-,-,100,TK_Complete,25/05/2018,18/04/2018,25/05/2018,07/08/2018,"THCP0090 FS","THCP0090","THCP0110 FS,THCP0130 FF","THCP0110,THCP0130",147,178,147,194,34,41,34,45,28,,"CCGT D1_Integrated Programme Schedule;CIVILS;CONSTRUCTION;Power Island - Turbine Hall Area;Foundation and Substructure;Condensate Pit",1,2,0.0000070387,0.0195320448,0.01525941,0,0.0,0.0000812387,0.0068493151,0.0061538462,0.010625,0.0501305483,0.0482625483,0.0,0.0,0.0
1.4.2.11.12.4-11,THCP0110,"Condensate Pit - Prepare CJ",7112,"CCGTD1_IPS",TT_Task,"58733",-,-,-,100,TK_Complete,26/05/2018,19/04/2018,26/05/2018,10/08/2018,"THCP0100 FS","THCP0100","THCP0140 FS","THCP0140",147,178,147,195,34,41,34,45,28,,"CCGT D1_Integrated Programme Schedule;CIVILS;CONSTRUCTION;Power Island - Turbine Hall Area;Foundation and Substructure;Condensate Pit",1,1,0.000003892,0.0191251272,0.0154628688,0,0.0,0.0000812387,0.0068493151,0.0030769231,0.005875,0.0490861619,0.0489060489,0.0,0.0,0.0
1.4.2.11.12.4-12,THCP0120,"Condensate Pit - Fix pit slab rebar",7112,"CCGTD1_IPS",TT_Task,"58733",-,-,-,100,TK_Complete,28/05/2018,21/03/2018,29/05/2018,06/08/2018,"THCP0080 FF","THCP0080","THCP0130 FS","THCP0130",147,174,147,194,34,40,34,45,29,,"CCGT D1_Integrated Programme Schedule;CIVILS;CONSTRUCTION;Power Island - Turbine Hall Area;Foundation and Substructure;Condensate Pit",1,1,0.0001170074,0.019328586,0.0150559512,1,0.0,0.000209244,0.0068493151,0.0030769231,0.176625,0.0496083551,0.0476190476,0.0022421525,0.0,0.0524499399
1.4.2.11.12.4-13,THCP0130,"Condensate Pit - Pour pit slab and kicker",7112,"CCGTD1_IPS",TT_Task,"58733",-,-,-,100,TK_Complete,31/05/2018,18/04/2018,31/05/2018,07/08/2018,"THCP0120 FS,THCP0100 FF","THCP0120,THCP0100","THCP0140 FS","THCP0140",148,178,148,194,34,41,34,45,29,,"CCGT D1_Integrated Programme Schedule;CIVILS;CONSTRUCTION;Power Island - Turbine Hall Area;Foundation and Substructure;Condensate Pit",2,1,0.0001217275,0.0191251272,0.0156663276,0,0.0,0.0000812387,0.0136986301,0.0030769231,0.18375,0.0490861619,0.0495495495,0.0,0.0,0.0
1.4.2.11.12.4-14,THCP0140,"Condensate Pit - Erect wall formwork",7112,"CCGTD1_IPS",TT_Task,"58733",-,-,-,100,TK_Complete,01/06/2018,19/04/2018,02/06/2018,31/08/2018,"THCP0130 FS,THCP0110 FS","THCP0130,THCP0110","THCP0150 FF","THCP0150",148,178,148,198,34,41,34,46,29,,"CCGT D1_Integrated Programme Schedule;CIVILS;CONSTRUCTION;Power Island - Turbine Hall Area;Foundation and Substructure;Condensate Pit",2,1,0.0001301325,0.0189216684,0.0160732452,1,0.0,0.0002195528,0.0136986301,0.0030769231,0.1964375,0.0485639687,0.0508365508,0.0022421525,0.0,0.0566739144
1.4.2.11.12.4-15,THCP0150,"Condensate Pit - Fix wall and column rebar",7112,"CCGTD1_IPS",TT_Task,"58733",-,-,-,100,TK_Complete,04/06/2018,19/04/2018,07/06/2018,31/08/2018,"THCP0140 FF","THCP0140","THCP0160 FF","THCP0160",148,178,149,198,34,41,34,46,29,,"CCGT D1_Integrated Programme Schedule;CIVILS;CONSTRUCTION;Power Island - Turbine Hall Area;Foundation and Substructure;Condensate Pit",1,1,0.0001306707,0.0187182096,0.016276704,3,0.0,0.0002680924,0.0068493151,0.0030769231,0.19725,0.0480417755,0.0514800515,0.0067264574,0.0,0.0765629227
1.4.2.11.12.4-16,THCP0160,"Condensate Pit - Close wall formwork",7112,"CCGTD1_IPS",TT_Task,"58733",-,-,-,100,TK_Complete,07/06/2018,22/04/2018,07/06/2018,02/09/2018,"THCP0150 FF","THCP0150","THCP0170 FS","THCP0170",149,179,149,198,34,41,34,46,30,,"CCGT D1_Integrated Programme Schedule;CIVILS;CONSTRUCTION;Power Island - Turbine Hall Area;Foundation and Substructure;Condensate Pit",1,1,0.0001311262,0.0185147508,0.0164801628,0,0.0,0.0000812387,0.0068493151,0.0030769231,0.1979375,0.0475195822,0.0521235521,0.0,0.0,0.0
1.4.2.11.12.4-17,THCP0170,"Condensate Pit - Pour walls and columns to the underside of Turbine Hall ground slab",7112,"CCGTD1_IPS",TT_Task,"58733",-,-,-,100,TK_Complete,31/07/2018,04/05/2018,31/07/2018,03/09/2018,"THCP0160 FS","THCP0160","THCP0180 FS,THCP0030 FS,THSS1050 FS","THCP0180,THCP0030,THSS1050",156,181,156,198,36,42,36,46,33,,"CCGT D1_Integrated Programme Schedule;CIVILS;CONSTRUCTION;Power Island - Turbine Hall Area;Foundation and Substructure;Condensate Pit",1,3,0.0001314988,0.018311292,0.0166836216,0,0.0,0.0000812387,0.0068493151,0.0092307692,0.1985,0.046997389,0.0527670528,0.0,0.0,0.0
1.4.2.11.12.4-18,THCP0015,"Condensate Pit - Sheet piling adjoining Turbine Table",7112,"CCGTD1_IPS",TT_Task,"58733",-,-,-,100,TK_Complete,28/09/2017,30/09/2017,24/10/2017,21/10/2017,"POW_BA58 FS","POW_BA58","THCP0020 FS,THTT0020 FS","THCP0020,THTT0020",113,150,116,153,26,35,27,35,12,,"CCGT D1_Integrated Programme Schedule;CIVILS;CONSTRUCTION;Power Island - Turbine Hall Area;Foundation and Substructure;Condensate Pit",1,2,0.0001237287,0.0427263479,0.003051882,26,1.0,0.0005009753,0.0068493151,0.0061538462,0.1867708333,0.1096605744,0.0096525097,0.0582959641,1.0,0.1719862638
1.4.2.11.12.4-19,THCP0075,"Condensate Pit - Install waterproofing",7112,"CCGTD1_IPS",TT_Task,"58733",-,-,-,100,TK_Complete,15/05/2018,20/03/2018,15/05/2018,27/07/2018,"THCP0070 FS","THCP0070","THCP0080 FS","THCP0080",145,174,145,193,34,40,34,45,28,,"CCGT D1_Integrated Programme Schedule;CIVILS;CONSTRUCTION;Power Island - Turbine Hall Area;Foundation and Substructure;Condensate Pit",1,1,0.0001240461,0.02034588,0.0146490336,0,0.0,0.0000812387,0.0068493151,0.0030769231,0.18725,0.0522193211,0.0463320463,0.0,0.0,0.0
1.4.2.11.12.4-20,THCP0180,"Condensate Pit - Curing",7112,"CCGTD1_IPS",TT_Task,"58733",-,-,-,100,TK_Complete,02/12/2018,04/09/2018,04/12/2018,06/09/2018,"THCP0170 FS","THCP0170","THCP0190 FF","THCP0190",174,198,174,198,40,46,40,46,41,,"CCGT D1_Integrated Programme Schedule;CIVILS;CONSTRUCTION;Power Island - Turbine Hall Area;Foundation and Substructure;Condensate Pit",1,1,0.0000727467,0.0179043744,0.0168870804,2,1.0,0.0000950701,0.0068493151,0.0030769231,0.1098125,0.0459530026,0.0534105534,0.0044843049,1.0,0.0056673914
1.4.2.11.12.4-21,THCP0190,"Condensate Pit - Apply waterproofing to the external face of pit wall",7112,"CCGTD1_IPS",TT_Task,"58733",-,-,-,100,TK_Complete,26/11/2018,07/09/2018,27/11/2018,07/09/2018,"THCP0180 FF","THCP0180","THCP0200 FS","THCP0200",173,199,173,199,40,46,40,46,40,,"CCGT D1_Integrated Programme Schedule;CIVILS;CONSTRUCTION;Power Island - Turbine Hall Area;Foundation and Substructure;Condensate Pit",1,1,0.0000729123,0.0177009156,0.0170905392,1,1.0,0.0001621654,0.0068493151,0.0030769231,0.1100625,0.0454308094,0.0540540541,0.0022421525,1.0,0.0331595537
1.4.2.11.12.4-22,THCP0200,"Condensate Pit - Backfill againt basement wall",7112,"CCGTD1_IPS",TT_Task,"58733",-,-,-,100,TK_Complete,26/11/2018,07/09/2018,28/11/2018,09/09/2018,"THCP0190 FS","THCP0190","THGF5020 FF,THGF3020 FF,THGF3010 FF,THGF5010 FF,THPP0200 FF","THGF5020,THGF3020,THGF3010,THGF5010,THPP0200",173,199,174,199,40,46,40,46,40,,"CCGT D1_Integrated Programme Schedule;CIVILS;CONSTRUCTION;Power Island - Turbine Hall Area;Foundation and Substructure;Condensate Pit",1,5,0.0000729951,0.0174974568,0.017293998,2,1.0,0.0002192709,0.0068493151,0.0153846154,0.1101875,0.0449086162,0.0546975547,0.0044843049,1.0,0.056558445
1.4.2.11.12.4-23,THCP0042,"Condensate Pit - Complete the slab around the sump pit (previosuly left out)",7112,"CCGTD1_IPS",TT_Task,"58733",-,-,-,100,TK_Complete,07/12/2018,12/11/2018,10/12/2018,22/11/2018,"","","","",175,208,175,209,40,48,41,48,42,,"CCGT D1_Integrated Programme Schedule;CIVILS;CONSTRUCTION;Power Island - Turbine Hall Area;Foundation and Substructure;Condensate Pit",0,0,0.0,0.0,0.0,3,0.4,0.0000812387,0.0,0.0,0.0,0.0,0.0,0.0067264574,0.4,0.0
1.4.2.11.12.5,58732,"Ground Beam and Ground Floor Slab",7112,"CCGTD1_IPS",WBS,"58730",,,,100,Complete,25/09/2017,05/09/2017,08/12/2018,02/10/2018,,,,,112,146,175,202,26,34,40,47,,,"CCGT D1_Integrated Programme Schedule;CIVILS;CONSTRUCTION;Power Island - Turbine Hall Area;Foundation and Substructure"
1.4.2.11.12.5-1,THGF0020,"Ground Slab TH1 - Blinding to the profile of pile caps and ground beams",7112,"CCGTD1_IPS",TT_Task,"58732",-,-,-,100,TK_Complete,06/10/2017,08/09/2017,09/10/2017,04/12/2017,"","","THGF0050 FS","THGF0050",114,147,114,159,26,34,26,37,12,,"CCGT D1_Integrated Programme Schedule;CIVILS;CONSTRUCTION;Power Island - Turbine Hall Area;Foundation and Substructure;Ground Beam and Ground Floor Slab",0,1,0.0,0.0006103764,0.0,3,0.0,0.0000812387,0.0,0.0030769231,0.0,0.0015665796,0.0,0.0067264574,0.0,0.0
1.4.2.11.12.5-2,THGF0030,"Ground Slab TH1 - Trim pile and prepare pile head",7112,"CCGTD1_IPS",TT_Task,"58732",-,-,-,100,TK_Complete,10/10/2017,05/09/2017,14/10/2017,06/10/2017,"","","THGF0040 FF","THGF0040",114,146,115,151,26,34,26,35,12,,"CCGT D1_Integrated Programme Schedule;CIVILS;CONSTRUCTION;Power Island - Turbine Hall Area;Foundation and Substructure;Ground Beam and Ground Floor Slab",0,1,0.0,0.0016276704,0.0,4,0.0,0.0000812387,0.0,0.0030769231,0.0,0.0041775457,0.0,0.0089686099,0.0,0.0
1.4.2.11.12.5-3,THGF0040,"Ground Slab TH1 - Capping plate and rebar starter",7112,"CCGTD1_IPS",TT_Task,"58732",-,-,-,100,TK_Complete,25/09/2017,14/09/2017,07/10/2017,07/10/2017,"THGF0030 FF","THGF0030","THGF0050 FF,THGF2020 FS","THGF0050,THGF2020",112,147,114,151,26,34,26,35,11,,"CCGT D1_Integrated Programme Schedule;CIVILS;CONSTRUCTION;Power Island - Turbine Hall Area;Foundation and Substructure;Ground Beam and Ground Floor Slab",1,2,0.0000002898,0.0014242116,0.0002034588,12,0.0,0.0001503957,0.0068493151,0.0061538462,0.0004375,0.0036553525,0.0006435006,0.0269058296,0.0,0.0283369572
1.4.2.11.12.5-4,THGF0050,"Ground Slab TH1 - Erect side formwork",7112,"CCGTD1_IPS",TT_Task,"58732",-,-,-,100,TK_Complete,09/10/2017,22/09/2017,10/10/2017,13/02/2018,"THGF0040 FF,THGF0020 FS","THGF0040,THGF0020","THGF0060 FS","THGF0060",114,149,114,169,26,34,26,39,12,,"CCGT D1_Integrated Programme Schedule;CIVILS;CONSTRUCTION;Power Island - Turbine Hall Area;Foundation and Substructure;Ground Beam and Ground Floor Slab",2,1,0.0000002484,0.0004069176,0.0006103764,1,0.0,0.0001823971,0.0136986301,0.0030769231,0.000375,0.0010443864,0.0019305019,0.0022421525,0.0,0.0414494422
1.4.2.11.12.5-5,THGF0060,"Ground Slab TH1 - Fix rebar for pile caps and ground beams and install cast-in / embed items",7112,"CCGTD1_IPS",TT_Task,"58732",-,-,-,100,TK_Complete,12/10/2017,20/09/2017,16/10/2017,13/02/2018,"THGF0050 FS,CLPSUP05 FS","THGF0050,CLPSUP05","THGF0070 FS","THGF0070",115,148,115,169,26,34,27,39,12,,"CCGT D1_Integrated Programme Schedule;CIVILS;CONSTRUCTION;Power Island - Turbine Hall Area;Foundation and Substructure;Ground Beam and Ground Floor Slab",2,1,0.000000207,0.0002034588,0.001017294,4,0.0,0.0002380266,0.0136986301,0.0030769231,0.0003125,0.0005221932,0.0032175032,0.0089686099,0.0,0.0642435271
1.4.2.11.12.5-6,THGF0070,"Ground Slab TH1 - Pour caps and beams to the level of ground floor slab underside",7112,"CCGTD1_IPS",TT_Task,"58732",-,-,-,100,TK_Complete,17/10/2017,23/09/2017,17/10/2017,14/02/2018,"THGF0060 FS","THGF0060","","",115,149,115,169,27,34,27,39,12,,"CCGT D1_Integrated Programme Schedule;CIVILS;CONSTRUCTION;Power Island - Turbine Hall Area;Foundation and Substructure;Ground Beam and Ground Floor Slab",1,0,0.0,0.0,0.0012207528,0,0.0,0.0000812387,0.0068493151,0.0,0.0,0.0,0.0038610039,0.0,0.0,0.0
1.4.2.11.12.5-7,THGF0080,"Ground Slab TH1 - Prepare CJ",7112,"CCGTD1_IPS",TT_Task,"58732",-,-,-,100,TK_Complete,15/03/2018,08/02/2018,15/03/2018,13/02/2018,"","","THGF0090 FF","THGF0090",137,168,137,169,32,39,32,39,22,,"CCGT D1_Integrated Programme Schedule;CIVILS;CONSTRUCTION;Power Island - Turbine Hall Area;Foundation and Substructure;Ground Beam and Ground Floor Slab",0,1,0.0,0.0113936928,0.0,0,0.4,0.0000812387,0.0,0.0030769231,0.0,0.0292428198,0.0,0.0,0.4,0.0
1.4.2.11.12.5-8,THGF0090,"Ground Slab TH1 - Fix ground floor slab rebar",7112,"CCGTD1_IPS",TT_Task,"58732",-,-,-,100,TK_Complete,16/03/2018,08/02/2018,21/03/2018,13/02/2018,"THGF0080 FF","THGF0080","THGF0100 FS,THPD0010 SS","THGF0100,THPD0010",137,168,138,169,32,39,32,39,22,,"CCGT D1_Integrated Programme Schedule;CIVILS;CONSTRUCTION;Power Island - Turbine Hall Area;Foundation and Substructure;Ground Beam and Ground Floor Slab",1,1,0.0000022772,0.011190234,0.0002034588,5,1.0,0.0001503957,0.0068493151,0.0030769231,0.0034375,0.0287206266,0.0006435006,0.0112107623,1.0,0.0283369572
1.4.2.11.12.5-9,THGF0100,"Ground Slab TH1 - Pour ground slab",7112,"CCGTD1_IPS",TT_Task,"58732",-,-,-,100,TK_Complete,22/03/2018,14/02/2018,22/03/2018,14/02/2018,"THGF0090 FS","THGF0090","THGF0110 FS,THSS0020 FS","THGF0110,THSS0020",138,169,138,169,32,39,32,39,23,,"CCGT D1_Integrated Programme Schedule;CIVILS;CONSTRUCTION;Power Island - Turbine Hall Area;Foundation and Substructure;Ground Beam and Ground Floor Slab",1,2,0.0000044716,0.0109867752,0.0004069176,0,1.0,0.0000812387,0.0068493151,0.0061538462,0.00675,0.0281984334,0.0012870013,0.0,1.0,0.0
1.4.2.11.12.5-10,THGF0110,"Ground Slab TH1 - Strike formwork (if any)",7112,"CCGTD1_IPS",TT_Task,"58732",-,-,-,100,TK_Complete,23/03/2018,20/02/2018,23/03/2018,21/02/2018,"THGF0100 FS","THGF0100","","",138,170,138,170,32,39,32,39,23,,"CCGT D1_Integrated Programme Schedule;CIVILS;CONSTRUCTION;Power Island - Turbine Hall Area;Foundation and Substructure;Ground Beam and Ground Floor Slab",1,0,0.0,0.0,0.0006103764,0,1.0,0.0000812387,0.0068493151,0.0,0.0,0.0,0.0019305019,0.0,1.0,0.0
1.4.2.11.12.5-11,THGF1020,"Ground Slab TH2 - Blinding to the profile of pile caps and ground beams",7112,"CCGTD1_IPS",TT_Task,"58732",-,-,-,100,TK_Complete,19/03/2018,18/01/2018,21/03/2018,20/01/2018,"","","THGF1050 FS,THGF1050 FF","THGF1050,THGF1050",137,165,138,166,32,38,32,38,23,,"CCGT D1_Integrated Programme Schedule;CIVILS;CONSTRUCTION;Power Island - Turbine Hall Area;Foundation and Substructure;Ground Beam and Ground Floor Slab",0,1,0.0,0.0187182096,0.0,2,1.0,0.0000812387,0.0,0.0030769231,0.0,0.0480417755,0.0,0.0044843049,1.0,0.0
1.4.2.11.12.5-12,THGF1030,"Ground Slab TH2 - Trim pile and prepare pile head",7112,"CCGTD1_IPS",TT_Task,"58732",-,-,-,100,TK_Complete,10/10/2017,05/09/2017,14/10/2017,15/01/2018,"THTT1060 FS,THTT1120 FS,THTT2060 FS,THTT2120 FS,THTT3060 FS,THTT3120 FS,THTT4060 FS,THTT5060 FS,THTT5120 FS","THTT1060,THTT1120,THTT2060,THTT2120,THTT3060,THTT3120,THTT4060,THTT5060,THTT5120","THGF1040 FF","THGF1040",114,146,115,165,26,34,26,38,12,,"CCGT D1_Integrated Programme Schedule;CIVILS;CONSTRUCTION;Power Island - Turbine Hall Area;Foundation and Substructure;Ground Beam and Ground Floor Slab",9,1,0.0000010144,0.0002034588,0.0134282808,4,0.0,0.0001546684,0.0616438356,0.0030769231,0.00153125,0.0005221932,0.0424710425,0.0089686099,0.0,0.0300876898
1.4.2.11.12.5-13,THGF1040,"Ground Slab TH2 - Capping plate and rebar starter",7112,"CCGTD1_IPS",TT_Task,"58732",-,-,-,100,TK_Complete,14/03/2018,13/01/2018,17/03/2018,17/01/2018,"THGF1030 FF,THCP0010 FS","THGF1030,THCP0010","","",137,165,137,165,31,38,32,38,22,,"CCGT D1_Integrated Programme Schedule;CIVILS;CONSTRUCTION;Power Island - Turbine Hall Area;Foundation and Substructure;Ground Beam and Ground Floor Slab",2,0,0.0,0.0,0.0140386572,3,0.6,0.0003786336,0.0136986301,0.0,0.0,0.0,0.0444015444,0.0067264574,0.6,0.1218570013
1.4.2.11.12.5-14,THGF1050,"Ground Slab TH2 - Erect side formwork",7112,"CCGTD1_IPS",TT_Task,"58732",-,-,-,100,TK_Complete,22/03/2018,02/02/2018,23/03/2018,03/03/2018,"THGF1020 FS,THGF1020 FF","THGF1020,THGF1020","THGF1060 FS","THGF1060",138,168,138,172,32,39,32,40,23,,"CCGT D1_Integrated Programme Schedule;CIVILS;CONSTRUCTION;Power Island - Turbine Hall Area;Foundation and Substructure;Ground Beam and Ground Floor Slab",1,1,0.0000037678,0.0185147508,0.0002034588,1,0.0,0.0001503957,0.0068493151,0.0030769231,0.0056875,0.0475195822,0.0006435006,0.0022421525,0.0,0.0283369572
1.4.2.11.12.5-15,THGF1060,"Ground Slab TH2 - Fix rebar for pile caps and ground beams install cast-in / embed items",7112,"CCGTD1_IPS",TT_Task,"58732",-,-,-,100,TK_Complete,02/03/2018,02/02/2018,07/03/2018,03/03/2018,"THGF1050 FS,CLPSUP05 FS","THGF1050,CLPSUP05","THGF1070 FS","THGF1070",135,168,136,172,31,39,31,40,21,,"CCGT D1_Integrated Programme Schedule;CIVILS;CONSTRUCTION;Power Island - Turbine Hall Area;Foundation and Substructure;Ground Beam and Ground Floor Slab",2,1,0.0000089743,0.018311292,0.0006103764,5,0.0,0.0002111651,0.0136986301,0.0030769231,0.013546875,0.046997389,0.0019305019,0.0112107623,0.0,0.0532370776
1.4.2.11.12.5-16,THGF1070,"Ground Slab TH2 - Pour caps and beams to the level of ground floor slab underside",7112,"CCGTD1_IPS",TT_Task,"58732",-,-,-,100,TK_Complete,03/05/2018,05/03/2018,03/05/2018,05/03/2018,"THGF1060 FS","THGF1060","THGF1100 FF","THGF1100",144,172,144,172,33,40,33,40,27,,"CCGT D1_Integrated Programme Schedule;CIVILS;CONSTRUCTION;Power Island - Turbine Hall Area;Foundation and Substructure;Ground Beam and Ground Floor Slab",1,1,0.000012535,0.0181078332,0.0008138352,0,1.0,0.0000812387,0.0068493151,0.0030769231,0.018921875,0.0464751958,0.0025740026,0.0,1.0,0.0
1.4.2.11.12.5-17,THGF1080,"Ground Slab TH2 - Prepare CJ",7112,"CCGTD1_IPS",TT_Task,"58732",-,-,-,100,TK_Complete,06/03/2018,24/02/2018,07/03/2018,03/03/2018,"","","THGF1090 FF","THGF1090",135,171,136,172,31,39,31,40,22,,"CCGT D1_Integrated Programme Schedule;CIVILS;CONSTRUCTION;Power Island - Turbine Hall Area;Foundation and Substructure;Ground Beam and Ground Floor Slab",0,1,0.0,0.018311292,0.0,1,0.6,0.0000812387,0.0,0.0030769231,0.0,0.046997389,0.0,0.0022421525,0.6,0.0
1.4.2.11.12.5-18,THGF1090,"Ground Slab TH2 - Fix ground floor slab rebar",7112,"CCGTD1_IPS",TT_Task,"58732",-,-,-,100,TK_Complete,26/02/2018,24/02/2018,08/03/2018,03/03/2018,"THGF1080 FF","THGF1080","THGF1100 FS","THGF1100",134,171,136,172,31,39,31,40,19,,"CCGT D1_Integrated Programme Schedule;CIVILS;CONSTRUCTION;Power Island - Turbine Hall Area;Foundation and Substructure;Ground Beam and Ground Floor Slab",1,1,0.0000036849,0.0181078332,0.0002034588,10,1.0,0.0001503957,0.0068493151,0.0030769231,0.0055625,0.0464751958,0.0006435006,0.0224215247,1.0,0.0283369572
1.4.2.11.12.5-19,THGF1100,"Ground Slab TH2 - Pour ground slab",7112,"CCGTD1_IPS",TT_Task,"58732",-,-,-,100,TK_Complete,03/05/2018,05/03/2018,03/05/2018,05/03/2018,"THGF1090 FS,THGF1070 FF","THGF1090,THGF1070","THGF1110 FS,THSS1010 FS,THSS1020 FS,THSS0010 FF","THGF1110,THSS1010,THSS1020,THSS0010",144,172,144,172,33,40,33,40,27,,"CCGT D1_Integrated Programme Schedule;CIVILS;CONSTRUCTION;Power Island - Turbine Hall Area;Foundation and Substructure;Ground Beam and Ground Floor Slab",2,4,0.0000233,0.0179043744,0.0014242116,0,1.0,0.0000812387,0.0136986301,0.0123076923,0.035171875,0.0459530026,0.0045045045,0.0,1.0,0.0
1.4.2.11.12.5-20,THGF1110,"Ground Slab TH2 - Strike formwork (if any)",7112,"CCGTD1_IPS",TT_Task,"58732",-,-,-,100,TK_Complete,04/05/2018,06/03/2018,04/05/2018,06/03/2018,"THGF1100 FS","THGF1100","","",144,172,144,172,33,40,33,40,27,,"CCGT D1_Integrated Programme Schedule;CIVILS;CONSTRUCTION;Power Island - Turbine Hall Area;Foundation and Substructure;Ground Beam and Ground Floor Slab",1,0,0.0,0.0,0.0016276704,0,1.0,0.0000812387,0.0068493151,0.0,0.0,0.0,0.0051480051,0.0,1.0,0.0
1.4.2.11.12.5-21,THGF2020,"Ground Slab TH3 - Blinding to the profile of pile caps and ground beams",7112,"CCGTD1_IPS",TT_Task,"58732",-,-,-,100,TK_Complete,16/10/2017,08/09/2017,19/10/2017,04/12/2017,"THGF0040 FS","THGF0040","THGF2050 FS","THGF2050",115,147,116,159,27,34,27,37,12,,"CCGT D1_Integrated Programme Schedule;CIVILS;CONSTRUCTION;Power Island - Turbine Hall Area;Foundation and Substructure;Ground Beam and Ground Floor Slab",1,1,0.0000002484,0.0006103764,0.0004069176,3,0.0,0.0001772427,0.0068493151,0.0030769231,0.000375,0.0015665796,0.0012870013,0.0067264574,0.0,0.039337455
1.4.2.11.12.5-22,THGF2030,"Ground Slab TH3 - Trim pile and prepare pile head",7112,"CCGTD1_IPS",TT_Task,"58732",-,-,-,100,TK_Complete,20/10/2017,05/09/2017,24/10/2017,13/10/2017,"","","THGF2040 FF","THGF2040",116,146,116,152,27,34,27,35,13,,"CCGT D1_Integrated Programme Schedule;CIVILS;CONSTRUCTION;Power Island - Turbine Hall Area;Foundation and Substructure;Ground Beam and Ground Floor Slab",0,1,0.0,0.0128179044,0.0,4,0.0,0.0000812387,0.0,0.0030769231,0.0,0.0328981723,0.0,0.0089686099,0.0,0.0
1.4.2.11.12.5-23,THGF2040,"Ground Slab TH3 - Capping plate and rebar starter",7112,"CCGTD1_IPS",TT_Task,"58732",-,-,-,100,TK_Complete,10/10/2017,10/10/2017,14/10/2017,14/10/2017,"THGF2030 FF","THGF2030","THGF2050 FS,THGF4020 FS","THGF2050,THGF4020",114,151,115,152,26,35,26,35,12,,"CCGT D1_Integrated Programme Schedule;CIVILS;CONSTRUCTION;Power Island - Turbine Hall Area;Foundation and Substructure;Ground Beam and Ground Floor Slab",1,2,0.000002567,0.0126144456,0.0002034588,4,1.0,0.0001503957,0.0068493151,0.0061538462,0.003875,0.0323759791,0.0006435006,0.0089686099,1.0,0.0283369572
1.4.2.11.12.5-24,THGF2050,"Ground Slab TH3 - Erect side formwork",7112,"CCGTD1_IPS",TT_Task,"58732",-,-,-,100,TK_Complete,27/12/2017,05/12/2017,30/12/2017,13/02/2018,"THGF2040 FS,THGF2020 FS","THGF2040,THGF2020","THGF2060 FS","THGF2060",126,159,126,169,29,37,29,39,16,,"CCGT D1_Integrated Programme Schedule;CIVILS;CONSTRUCTION;Power Island - Turbine Hall Area;Foundation and Substructure;Ground Beam and Ground Floor Slab",2,1,0.000000414,0.0004069176,0.001017294,3,0.0,0.0002961355,0.0136986301,0.0030769231,0.000625,0.0010443864,0.0032175032,0.0067264574,0.0,0.0880535583
1.4.2.11.12.5-25,THGF2060,"Ground Slab TH3 - Fix rebar for pile caps and ground beams install cast-in / embed items",7112,"CCGTD1_IPS",TT_Task,"58732",-,-,-,100,TK_Complete,02/01/2018,09/12/2017,08/01/2018,13/02/2018,"THGF2050 FS,CLPSUP05 FS","THGF2050,CLPSUP05","THGF2070 FS","THGF2070",126,160,127,169,29,37,29,39,16,,"CCGT D1_Integrated Programme Schedule;CIVILS;CONSTRUCTION;Power Island - Turbine Hall Area;Foundation and Substructure;Ground Beam and Ground Floor Slab",2,1,0.0000002898,0.0002034588,0.0014242116,6,0.0,0.0003357017,0.0136986301,0.0030769231,0.0004375,0.0005221932,0.0045045045,0.0134529148,0.0,0.10426572
1.4.2.11.12.5-26,THGF2070,"Ground Slab TH3 - Pour caps and beams to the level of ground floor slab underside",7112,"CCGTD1_IPS",TT_Task,"58732",-,-,-,100,TK_Complete,14/03/2018,20/01/2018,14/03/2018,14/02/2018,"THGF2060 FS","THGF2060","","",137,166,137,169,31,38,31,39,22,,"CCGT D1_Integrated Programme Schedule;CIVILS;CONSTRUCTION;Power Island - Turbine Hall Area;Foundation and Substructure;Ground Beam and Ground Floor Slab",1,0,0.0,0.0,0.0016276704,0,0.0,0.0000812387,0.0068493151,0.0,0.0,0.0,0.0051480051,0.0,0.0,0.0
1.4.2.11.12.5-27,THGF2080,"Ground Slab TH3 - Prepare CJ",7112,"CCGTD1_IPS",TT_Task,"58732",-,-,-,100,TK_Complete,15/03/2018,08/02/2018,15/03/2018,13/02/2018,"","","THGF2090 FF","THGF2090",137,168,137,169,32,39,32,39,22,,"CCGT D1_Integrated Programme Schedule;CIVILS;CONSTRUCTION;Power Island - Turbine Hall Area;Foundation and Substructure;Ground Beam and Ground Floor Slab",0,1,0.0,0.0113936928,0.0,0,0.2,0.0000812387,0.0,0.0030769231,0.0,0.0292428198,0.0,0.0,0.2,0.0
1.4.2.11.12.5-28,THGF2090,"Ground Slab TH3 - Fix ground floor slab rebar",7112,"CCGTD1_IPS",TT_Task,"58732",-,-,-,100,TK_Complete,16/03/2018,08/02/2018,21/03/2018,13/02/2018,"THGF2080 FF","THGF2080","THGF2100 FS","THGF2100",137,168,138,169,32,39,32,39,22,,"CCGT D1_Integrated Programme Schedule;CIVILS;CONSTRUCTION;Power Island - Turbine Hall Area;Foundation and Substructure;Ground Beam and Ground Floor Slab",1,1,0.0000022772,0.011190234,0.0002034588,5,1.0,0.0001503957,0.0068493151,0.0030769231,0.0034375,0.0287206266,0.0006435006,0.0112107623,1.0,0.0283369572
1.4.2.11.12.5-29,THGF2100,"Ground Slab TH3 - Pour ground slab",7112,"CCGTD1_IPS",TT_Task,"58732",-,-,-,100,TK_Complete,22/03/2018,14/02/2018,22/03/2018,14/02/2018,"THGF2090 FS","THGF2090","THGF2110 FS,THSS0020 FS","THGF2110,THSS0020",138,169,138,169,32,39,32,39,23,,"CCGT D1_Integrated Programme Schedule;CIVILS;CONSTRUCTION;Power Island - Turbine Hall Area;Foundation and Substructure;Ground Beam and Ground Floor Slab",1,2,0.0000044716,0.0109867752,0.0004069176,0,1.0,0.0000812387,0.0068493151,0.0061538462,0.00675,0.0281984334,0.0012870013,0.0,1.0,0.0
1.4.2.11.12.5-30,THGF2110,"Ground Slab TH3 - Strike formwork (if any)",7112,"CCGTD1_IPS",TT_Task,"58732",-,-,-,100,TK_Complete,23/03/2018,20/02/2018,23/03/2018,21/02/2018,"THGF2100 FS","THGF2100","","",138,170,138,170,32,39,32,39,23,,"CCGT D1_Integrated Programme Schedule;CIVILS;CONSTRUCTION;Power Island - Turbine Hall Area;Foundation and Substructure;Ground Beam and Ground Floor Slab",1,0,0.0,0.0,0.0006103764,0,1.0,0.0000812387,0.0068493151,0.0,0.0,0.0,0.0019305019,0.0,1.0,0.0
1.4.2.11.12.5-31,THGF3010,"Ground Slab TH4 - Backfill the interface area between Turbine Table to +4.2 mPD",7112,"CCGTD1_IPS",TT_Task,"58732",-,-,-,100,TK_Complete,06/12/2018,07/09/2018,08/12/2018,09/09/2018,"THCP0200 FF,THTT5120 FS,THTT5060 FS,THTT4060 FS,THTT3120 FS,THTT3060 FS,THTT2120 FS,THTT2060 FS,THTT1120 FS,THTT1060 FS","THCP0200,THTT5120,THTT5060,THTT4060,THTT3120,THTT3060,THTT2120,THTT2060,THTT1120,THTT1060","THGF3020 FF","THGF3020",175,199,175,199,40,46,40,46,42,,"CCGT D1_Integrated Programme Schedule;CIVILS;CONSTRUCTION;Power Island - Turbine Hall Area;Foundation and Substructure;Ground Beam and Ground Floor Slab",10,1,0.0000695172,0.0126144456,0.0174974568,2,1.0,0.0001552914,0.0684931507,0.0030769231,0.1049375,0.0323759791,0.0553410553,0.0044843049,1.0,0.0303429549
1.4.2.11.12.5-32,THGF3020,"Ground Slab TH4 - Blinding to the profile of pile caps and ground beams",7112,"CCGTD1_IPS",TT_Task,"58732",-,-,-,100,TK_Complete,26/11/2018,07/09/2018,28/11/2018,09/09/2018,"THGF3010 FF,THCP0200 FF","THGF3010,THCP0200","THGF3050 FS","THGF3050",173,199,174,199,40,46,40,46,39,,"CCGT D1_Integrated Programme Schedule;CIVILS;CONSTRUCTION;Power Island - Turbine Hall Area;Foundation and Substructure;Ground Beam and Ground Floor Slab",2,1,0.0000784604,0.0124109868,0.0177009156,2,1.0,0.0002507805,0.0136986301,0.0030769231,0.1184375,0.0318537859,0.055984556,0.0044843049,1.0,0.0694694102
1.4.2.11.12.5-33,THGF3030,"Ground Slab TH4 - Trim pile and prepare pile head",7112,"CCGTD1_IPS",TT_Task,"58732",-,-,-,100,TK_Complete,27/12/2017,18/12/2017,30/12/2017,21/12/2017,"","","THGF3040 FF","THGF3040",126,161,126,161,29,37,29,37,16,,"CCGT D1_Integrated Programme Schedule;CIVILS;CONSTRUCTION;Power Island - Turbine Hall Area;Foundation and Substructure;Ground Beam and Ground Floor Slab",0,1,0.0,0.0002034588,0.0,3,1.0,0.0000812387,0.0,0.0030769231,0.0,0.0005221932,0.0,0.0067264574,1.0,0.0
1.4.2.11.12.5-34,THGF3040,"Ground Slab TH4 - Capping plate and rebar starter",7112,"CCGTD1_IPS",TT_Task,"58732",-,-,-,100,TK_Complete,28/12/2017,19/12/2017,02/01/2018,22/12/2017,"THGF3030 FF","THGF3030","","",126,161,126,162,29,37,29,37,16,,"CCGT D1_Integrated Programme Schedule;CIVILS;CONSTRUCTION;Power Island - Turbine Hall Area;Foundation and Substructure;Ground Beam and Ground Floor Slab",1,0,0.0,0.0,0.0002034588,5,1.0,0.0001503957,0.0068493151,0.0,0.0,0.0,0.0006435006,0.0112107623,1.0,0.0283369572
1.4.2.11.12.5-35,THGF3050,"Ground Slab TH4 - Erect side formwork",7112,"CCGTD1_IPS",TT_Task,"58732",-,-,-,100,TK_Complete,26/11/2018,10/09/2018,27/11/2018,29/09/2018,"THGF3020 FS","THGF3020","THGF3060 FS","THGF3060",173,199,173,202,40,46,40,47,39,,"CCGT D1_Integrated Programme Schedule;CIVILS;CONSTRUCTION;Power Island - Turbine Hall Area;Foundation and Substructure;Ground Beam and Ground Floor Slab",1,1,0.0000773425,0.012207528,0.0179043744,1,0.0,0.0002947763,0.0068493151,0.0030769231,0.11675,0.0313315927,0.0566280566,0.0022421525,0.0,0.0874966201
1.4.2.11.12.5-36,THGF3060,"Ground Slab TH4 - Fix rebar for pile caps and ground beams install cast-in / embed items",7112,"CCGTD1_IPS",TT_Task,"58732",-,-,-,100,TK_Complete,26/11/2018,10/09/2018,29/11/2018,29/09/2018,"THGF3050 FS,CLPSUP05 FS","THGF3050,CLPSUP05","THGF3070 FS,THGF3080 FS","THGF3070,THGF3080",173,199,174,202,40,46,40,47,39,,"CCGT D1_Integrated Programme Schedule;CIVILS;CONSTRUCTION;Power Island - Turbine Hall Area;Foundation and Substructure;Ground Beam and Ground Floor Slab",2,2,0.0000764213,0.0120040692,0.0181078332,3,0.0,0.0003334394,0.0136986301,0.0061538462,0.115359375,0.0308093995,0.0572715573,0.0067264574,0.0,0.1033387469
1.4.2.11.12.5-37,THGF3070,"Ground Slab TH4 - Pour caps and beams to the level of ground floor slab underside",7112,"CCGTD1_IPS",TT_Task,"58732",-,-,-,100,TK_Complete,05/12/2018,30/09/2018,05/12/2018,30/09/2018,"THGF3060 FS,THGF3090 FS","THGF3060,THGF3090","","",175,202,175,202,40,47,40,47,41,,"CCGT D1_Integrated Programme Schedule;CIVILS;CONSTRUCTION;Power Island - Turbine Hall Area;Foundation and Substructure;Ground Beam and Ground Floor Slab",2,0,0.0,0.0,0.0187182096,0,1.0,0.0000812387,0.0136986301,0.0,0.0,0.0,0.0592020592,0.0,1.0,0.0
1.4.2.11.12.5-38,THGF3080,"Ground Slab TH4 - Prepare CJ",7112,"CCGTD1_IPS",TT_Task,"58732",-,-,-,100,TK_Complete,30/11/2018,30/09/2018,30/11/2018,30/09/2018,"THGF3060 FS","THGF3060","THGF3090 FS","THGF3090",174,202,174,202,40,47,40,47,41,,"CCGT D1_Integrated Programme Schedule;CIVILS;CONSTRUCTION;Power Island - Turbine Hall Area;Foundation and Substructure;Ground Beam and Ground Floor Slab",1,1,0.0000714114,0.0118006104,0.018311292,0,1.0,0.0000812387,0.0068493151,0.0030769231,0.107796875,0.0302872063,0.0579150579,0.0,1.0,0.0
1.4.2.11.12.5-39,THGF3090,"Ground Slab TH4 - Fix ground floor slab rebar",7112,"CCGTD1_IPS",TT_Task,"58732",-,-,-,100,TK_Complete,01/12/2018,10/09/2018,04/12/2018,29/09/2018,"THGF3080 FS","THGF3080","THGF3100 FS,THGF3070 FS","THGF3100,THGF3070",174,199,174,202,40,46,40,47,41,,"CCGT D1_Integrated Programme Schedule;CIVILS;CONSTRUCTION;Power Island - Turbine Hall Area;Foundation and Substructure;Ground Beam and Ground Floor Slab",1,2,0.0000700451,0.0115971516,0.0185147508,3,0.0,0.0001503957,0.0068493151,0.0061538462,0.105734375,0.0297650131,0.0585585586,0.0067264574,0.0,0.0283369572
1.4.2.11.12.5-40,THGF3100,"Ground Slab TH4 - Pour ground slab",7112,"CCGTD1_IPS",TT_Task,"58732",-,-,-,100,TK_Complete,05/12/2018,30/09/2018,05/12/2018,30/09/2018,"THGF3090 FS","THGF3090","THSS1030 FS","THSS1030",175,202,175,202,40,47,40,47,42,,"CCGT D1_Integrated Programme Schedule;CIVILS;CONSTRUCTION;Power Island - Turbine Hall Area;Foundation and Substructure;Ground Beam and Ground Floor Slab",1,1,0.0000685131,0.011190234,0.0187182096,0,1.0,0.0000812387,0.0068493151,0.0030769231,0.103421875,0.0287206266,0.0592020592,0.0,1.0,0.0
1.4.2.11.12.5-41,THGF4020,"Ground Slab TH5 - Blinding to the profile of pile caps and ground beams",7112,"CCGTD1_IPS",TT_Task,"58732",-,-,-,100,TK_Complete,09/10/2017,08/09/2017,12/10/2017,06/02/2018,"THGF2040 FS","THGF2040","THGF4050 FS","THGF4050",114,147,115,168,26,34,26,39,12,,"CCGT D1_Integrated Programme Schedule;CIVILS;CONSTRUCTION;Power Island - Turbine Hall Area;Foundation and Substructure;Ground Beam and Ground Floor Slab",1,1,0.0000048029,0.0118006104,0.0004069176,3,0.0,0.0001452414,0.0068493151,0.0030769231,0.00725,0.0302872063,0.0012870013,0.0067264574,0.0,0.02622497
1.4.2.11.12.5-42,THGF4030,"Ground Slab TH5 - Trim pile and prepare pile head",7112,"CCGTD1_IPS",TT_Task,"58732",-,-,-,100,TK_Complete,13/10/2017,05/09/2017,17/10/2017,20/10/2017,"","","THGF4040 FF","THGF4040",115,146,115,153,26,34,27,35,12,,"CCGT D1_Integrated Programme Schedule;CIVILS;CONSTRUCTION;Power Island - Turbine Hall Area;Foundation and Substructure;Ground Beam and Ground Floor Slab",0,1,0.0,0.0120040692,0.0,4,0.0,0.0000812387,0.0,0.0030769231,0.0,0.0308093995,0.0,0.0089686099,0.0,0.0
1.4.2.11.12.5-43,THGF4040,"Ground Slab TH5 - Capping plate and rebar starter",7112,"CCGTD1_IPS",TT_Task,"58732",-,-,-,100,TK_Complete,17/10/2017,17/10/2017,21/10/2017,21/10/2017,"THGF4030 FF","THGF4030","THGF4050 FS","THGF4050",115,152,116,153,27,35,27,35,12,,"CCGT D1_Integrated Programme Schedule;CIVILS;CONSTRUCTION;Power Island - Turbine Hall Area;Foundation and Substructure;Ground Beam and Ground Floor Slab",1,1,0.0000024014,0.0118006104,0.0002034588,4,1.0,0.0001503957,0.0068493151,0.0030769231,0.003625,0.0302872063,0.0006435006,0.0089686099,1.0,0.0283369572
1.4.2.11.12.5-44,THGF4050,"Ground Slab TH5 - Erect side formwork",7112,"CCGTD1_IPS",TT_Task,"58732",-,-,-,100,TK_Complete,06/03/2018,07/02/2018,09/03/2018,06/03/2018,"THGF4040 FS,THGF4020 FS","THGF4040,THGF4020","THGF4060 FF","THGF4060",135,168,136,172,31,39,31,40,22,,"CCGT D1_Integrated Programme Schedule;CIVILS;CONSTRUCTION;Power Island - Turbine Hall Area;Foundation and Substructure;Ground Beam and Ground Floor Slab",2,1,0.0000118001,0.0115971516,0.001017294,3,0.0,0.0003328925,0.0136986301,0.0030769231,0.0178125,0.0297650131,0.0032175032,0.0067264574,0.0,0.1031146512
1.4.2.11.12.5-45,THGF4060,"Ground Slab TH5 - Fix rebar for pile caps and ground beams install cast-in / embed items",7112,"CCGTD1_IPS",TT_Task,"58732",-,-,-,100,TK_Complete,02/03/2018,07/02/2018,09/03/2018,06/03/2018,"THGF4050 FF,CLPSUP05 FS","THGF4050,CLPSUP05","THGF4070 FS","THGF4070",135,168,136,172,31,39,31,40,21,,"CCGT D1_Integrated Programme Schedule;CIVILS;CONSTRUCTION;Power Island - Turbine Hall Area;Foundation and Substructure;Ground Beam and Ground Floor Slab",2,1,0.0000148226,0.0113936928,0.0014242116,7,0.0,0.000367357,0.0136986301,0.0030769231,0.022375,0.0292428198,0.0045045045,0.0156950673,0.0,0.1172364147
1.4.2.11.12.5-46,THGF4070,"Ground Slab TH5 - Pour caps and beams to the level of ground floor slab underside",7112,"CCGTD1_IPS",TT_Task,"58732",-,-,-,100,TK_Complete,08/05/2018,07/03/2018,08/05/2018,07/03/2018,"THGF4060 FS","THGF4060","THGF4100 FF","THGF4100",144,172,144,172,33,40,33,40,27,,"CCGT D1_Integrated Programme Schedule;CIVILS;CONSTRUCTION;Power Island - Turbine Hall Area;Foundation and Substructure;Ground Beam and Ground Floor Slab",1,1,0.00001681,0.011190234,0.0016276704,0,1.0,0.0000812387,0.0068493151,0.0030769231,0.025375,0.0287206266,0.0051480051,0.0,1.0,0.0
1.4.2.11.12.5-47,THGF4080,"Ground Slab TH5 - Prepare CJ",7112,"CCGTD1_IPS",TT_Task,"58732",-,-,-,100,TK_Complete,23/04/2018,26/02/2018,04/05/2018,06/03/2018,"","","THGF4090 FF","THGF4090",142,171,144,172,33,40,33,40,25,,"CCGT D1_Integrated Programme Schedule;CIVILS;CONSTRUCTION;Power Island - Turbine Hall Area;Foundation and Substructure;Ground Beam and Ground Floor Slab",0,1,0.0,0.0113936928,0.0,11,1.0,0.0000812387,0.0,0.0030769231,0.0,0.0292428198,0.0,0.0246636771,1.0,0.0
1.4.2.11.12.5-48,THGF4090,"Ground Slab TH5 - Fix ground floor slab rebar",7112,"CCGTD1_IPS",TT_Task,"58732",-,-,-,100,TK_Complete,24/04/2018,27/02/2018,04/05/2018,06/03/2018,"THGF4080 FF","THGF4080","THGF4100 FS","THGF4100",142,171,144,172,33,40,33,40,25,,"CCGT D1_Integrated Programme Schedule;CIVILS;CONSTRUCTION;Power Island - Turbine Hall Area;Foundation and Substructure;Ground Beam and Ground Floor Slab",1,1,0.0000022772,0.011190234,0.0002034588,10,1.0,0.0001503957,0.0068493151,0.0030769231,0.0034375,0.0287206266,0.0006435006,0.0224215247,1.0,0.0283369572
1.4.2.11.12.5-49,THGF4100,"Ground Slab TH5 - Pour ground slab",7112,"CCGTD1_IPS",TT_Task,"58732",-,-,-,100,TK_Complete,08/05/2018,07/03/2018,08/05/2018,07/03/2018,"THGF4090 FS,THGF4070 FF","THGF4090,THGF4070","THGF4110 FS,THSS0020 FS","THGF4110,THSS0020",144,172,144,172,33,40,33,40,27,,"CCGT D1_Integrated Programme Schedule;CIVILS;CONSTRUCTION;Power Island - Turbine Hall Area;Foundation and Substructure;Ground Beam and Ground Floor Slab",2,2,0.0000231862,0.0109867752,0.0022380468,0,1.0,0.0000812387,0.0136986301,0.0061538462,0.035,0.0281984334,0.0070785071,0.0,1.0,0.0
1.4.2.11.12.5-50,THGF4110,"Ground Slab TH5 - Strike formwork (if any)",7112,"CCGTD1_IPS",TT_Task,"58732",-,-,-,100,TK_Complete,10/05/2018,08/03/2018,10/05/2018,08/03/2018,"THGF4100 FS","THGF4100","","",145,172,145,172,33,40,33,40,27,,"CCGT D1_Integrated Programme Schedule;CIVILS;CONSTRUCTION;Power Island - Turbine Hall Area;Foundation and Substructure;Ground Beam and Ground Floor Slab",1,0,0.0,0.0,0.0024415056,0,1.0,0.0000812387,0.0068493151,0.0,0.0,0.0,0.0077220077,0.0,1.0,0.0
1.4.2.11.12.5-51,THGF5010,"Ground Slab TH6 - Backfill the interface area between Turbine Table to +4.2 mPD",7112,"CCGTD1_IPS",TT_Task,"58732",-,-,-,100,TK_Complete,06/12/2018,07/09/2018,08/12/2018,09/09/2018,"THTT5120 FS,THPP0200 FF,THCP0200 FF,THTT5060 FS,THTT4060 FS,THTT3120 FS,THTT3060 FS,THTT2120 FS,THTT2060 FS,THTT1120 FS,THTT1060 FS","THTT5120,THPP0200,THCP0200,THTT5060,THTT4060,THTT3120,THTT3060,THTT2120,THTT2060,THTT1120,THTT1060","THGF5020 FF","THGF5020",175,199,175,199,40,46,40,46,42,,"CCGT D1_Integrated Programme Schedule;CIVILS;CONSTRUCTION;Power Island - Turbine Hall Area;Foundation and Substructure;Ground Beam and Ground Floor Slab",11,1,0.0000695172,0.0126144456,0.0211597152,2,1.0,0.0002185301,0.0753424658,0.0030769231,0.1049375,0.0323759791,0.0669240669,0.0044843049,1.0,0.0562548711
1.4.2.11.12.5-52,THGF5020,"Ground Slab TH6 - Blinding to the profile of pile caps and ground beams",7112,"CCGTD1_IPS",TT_Task,"58732",-,-,-,100,TK_Complete,29/11/2018,07/09/2018,01/12/2018,09/09/2018,"THGF5010 FF,THCP0200 FF,THPP0200 FF","THGF5010,THCP0200,THPP0200","THGF5050 FS","THGF5050",174,199,174,199,40,46,40,46,41,,"CCGT D1_Integrated Programme Schedule;CIVILS;CONSTRUCTION;Power Island - Turbine Hall Area;Foundation and Substructure;Ground Beam and Ground Floor Slab",3,1,0.0001119976,0.0124109868,0.021363174,2,1.0,0.000367911,0.0205479452,0.0030769231,0.1690625,0.0318537859,0.0675675676,0.0044843049,1.0,0.1174634044
1.4.2.11.12.5-53,THGF5030,"Ground Slab TH6 - Trim pile and prepare pile head",7112,"CCGTD1_IPS",TT_Task,"58732",-,-,-,100,TK_Complete,27/12/2017,11/12/2017,30/12/2017,14/12/2017,"","","THGF5040 FF","THGF5040",126,160,126,160,29,37,29,37,16,,"CCGT D1_Integrated Programme Schedule;CIVILS;CONSTRUCTION;Power Island - Turbine Hall Area;Foundation and Substructure;Ground Beam and Ground Floor Slab",0,1,0.0,0.0002034588,0.0,3,1.0,0.0000812387,0.0,0.0030769231,0.0,0.0005221932,0.0,0.0067264574,1.0,0.0
1.4.2.11.12.5-54,THGF5040,"Ground Slab TH6 - Capping plate and rebar starter",7112,"CCGTD1_IPS",TT_Task,"58732",-,-,-,100,TK_Complete,28/12/2017,12/12/2017,02/01/2018,15/12/2017,"THGF5030 FF","THGF5030","","",126,160,126,161,29,37,29,37,16,,"CCGT D1_Integrated Programme Schedule;CIVILS;CONSTRUCTION;Power Island - Turbine Hall Area;Foundation and Substructure;Ground Beam and Ground Floor Slab",1,0,0.0,0.0,0.0002034588,5,1.0,0.0001503957,0.0068493151,0.0,0.0,0.0,0.0006435006,0.0112107623,1.0,0.0283369572
1.4.2.11.12.5-55,THGF5050,"Ground Slab TH6 - Erect side formwork",7112,"CCGTD1_IPS",TT_Task,"58732",-,-,-,100,TK_Complete,26/11/2018,10/09/2018,27/11/2018,29/09/2018,"THGF5020 FS","THGF5020","THGF5060 FS","THGF5060",173,199,173,202,40,46,40,47,39,,"CCGT D1_Integrated Programme Schedule;CIVILS;CONSTRUCTION;Power Island - Turbine Hall Area;Foundation and Substructure;Ground Beam and Ground Floor Slab",1,1,0.0001101344,0.012207528,0.0215666328,1,0.0,0.0003946647,0.0068493151,0.0030769231,0.16625,0.0313315927,0.0682110682,0.0022421525,0.0,0.1284256966
1.4.2.11.12.5-56,THGF5060,"Ground Slab TH6 - Fix rebar for pile caps and ground beams install cast-in / embed items",7112,"CCGTD1_IPS",TT_Task,"58732",-,-,-,100,TK_Complete,26/11/2018,10/09/2018,29/11/2018,29/09/2018,"THGF5050 FS,CLPSUP05 FS","THGF5050,CLPSUP05","THGF5070 FS,THGF5080 FS","THGF5070,THGF5080",173,199,174,202,40,46,40,47,39,,"CCGT D1_Integrated Programme Schedule;CIVILS;CONSTRUCTION;Power Island - Turbine Hall Area;Foundation and Substructure;Ground Beam and Ground Floor Slab",2,2,0.0001084679,0.0120040692,0.0217700916,3,0.0,0.0004196216,0.0136986301,0.0061538462,0.163734375,0.0308093995,0.0688545689,0.0067264574,0.0,0.1386517276
1.4.2.11.12.5-57,THGF5070,"Ground Slab TH6 - Pour caps and beams to the level of ground floor slab underside",7112,"CCGTD1_IPS",TT_Task,"58732",-,-,-,100,TK_Complete,05/12/2018,30/09/2018,05/12/2018,30/09/2018,"THGF5060 FS,THGF5090 FS","THGF5060,THGF5090","","",175,202,175,202,40,47,40,47,42,,"CCGT D1_Integrated Programme Schedule;CIVILS;CONSTRUCTION;Power Island - Turbine Hall Area;Foundation and Substructure;Ground Beam and Ground Floor Slab",2,0,0.0,0.0,0.022380468,0,1.0,0.0000812387,0.0136986301,0.0,0.0,0.0,0.0707850708,0.0,1.0,0.0
1.4.2.11.12.5-58,THGF5080,"Ground Slab TH6 - Prepare CJ",7112,"CCGTD1_IPS",TT_Task,"58732",-,-,-,100,TK_Complete,30/11/2018,30/09/2018,30/11/2018,30/09/2018,"THGF5060 FS","THGF5060","THGF5090 FS","THGF5090",174,202,174,202,40,47,40,47,41,,"CCGT D1_Integrated Programme Schedule;CIVILS;CONSTRUCTION;Power Island - Turbine Hall Area;Foundation and Substructure;Ground Beam and Ground Floor Slab",1,1,0.0001019675,0.0118006104,0.0219735504,0,1.0,0.0000812387,0.0068493151,0.0030769231,0.153921875,0.0302872063,0.0694980695,0.0,1.0,0.0
1.4.2.11.12.5-59,THGF5090,"Ground Slab TH6 - Fix ground floor slab rebar",7112,"CCGTD1_IPS",TT_Task,"58732",-,-,-,100,TK_Complete,01/12/2018,10/09/2018,04/12/2018,30/09/2018,"THGF5080 FS","THGF5080","THGF5100 FS,THGF5070 FS","THGF5100,THGF5070",174,199,174,202,40,46,40,47,41,,"CCGT D1_Integrated Programme Schedule;CIVILS;CONSTRUCTION;Power Island - Turbine Hall Area;Foundation and Substructure;Ground Beam and Ground Floor Slab",1,2,0.0000998559,0.0115971516,0.0221770092,3,0.0,0.0001503957,0.0068493151,0.0061538462,0.150734375,0.0297650131,0.0701415701,0.0067264574,0.0,0.0283369572
1.4.2.11.12.5-60,THGF5100,"Ground Slab TH6 - Pour ground slab",7112,"CCGTD1_IPS",TT_Task,"58732",-,-,-,100,TK_Complete,05/12/2018,30/09/2018,05/12/2018,30/09/2018,"THGF5090 FS","THGF5090","THEL0010 FF,THPD0010 FF,THCT0010 FF,THSS1030 FS","THEL0010,THPD0010,THCT0010,THSS1030",175,202,175,202,40,47,40,47,42,,"CCGT D1_Integrated Programme Schedule;CIVILS;CONSTRUCTION;Power Island - Turbine Hall Area;Foundation and Substructure;Ground Beam and Ground Floor Slab",1,1,0.0000975787,0.011190234,0.022380468,0,1.0,0.0000812387,0.0068493151,0.0030769231,0.147296875,0.0287206266,0.0707850708,0.0,1.0,0.0
1.4.2.11.12.5-61,THGF6020,"Ground Slab TH7 - Blinding to the profile of pile caps and ground beams",7112,"CCGTD1_IPS",TT_Task,"58732",-,-,-,100,TK_Complete,02/03/2018,22/02/2018,05/03/2018,24/02/2018,"THGF6040 FS","THGF6040","THGF6050 FF","THGF6050",135,170,135,171,31,39,31,39,21,,"CCGT D1_Integrated Programme Schedule;CIVILS;CONSTRUCTION;Power Island - Turbine Hall Area;Foundation and Substructure;Ground Beam and Ground Floor Slab",1,1,0.0000653768,0.0063072228,0.0138351984,3,1.0,0.000289092,0.0068493151,0.0030769231,0.0986875,0.0161879896,0.0437580438,0.0067264574,1.0,0.0851674859
1.4.2.11.12.5-62,THGF6030,"Ground Slab TH7 - Trim pile and prepare pile head",7112,"CCGTD1_IPS",TT_Task,"58732",-,-,-,100,TK_Complete,21/10/2017,21/10/2017,27/10/2017,10/01/2018,"THTT1060 FS,THTT1120 FS,THTT2060 FS,THTT2120 FS,THTT3060 FS,THTT3120 FS,THTT4060 FS,THTT5060 FS,THTT5120 FS","THTT1060,THTT1120,THTT2060,THTT2120,THTT3060,THTT3120,THTT4060,THTT5060,THTT5120","THGF6040 FF","THGF6040",116,153,117,164,27,35,27,38,13,,"CCGT D1_Integrated Programme Schedule;CIVILS;CONSTRUCTION;Power Island - Turbine Hall Area;Foundation and Substructure;Ground Beam and Ground Floor Slab",9,1,0.000068275,0.0067141404,0.0134282808,6,0.0,0.0001913833,0.0616438356,0.0030769231,0.1030625,0.017232376,0.0424710425,0.0134529148,0.0,0.0451315347
1.4.2.11.12.5-63,THGF6040,"Ground Slab TH7 - Capping plate and rebar starter",7112,"CCGTD1_IPS",TT_Task,"58732",-,-,-,100,TK_Complete,06/03/2018,08/01/2018,09/03/2018,21/02/2018,"THGF6030 FF","THGF6030","THGF6020 FS","THGF6020",135,164,136,170,31,38,31,39,22,,"CCGT D1_Integrated Programme Schedule;CIVILS;CONSTRUCTION;Power Island - Turbine Hall Area;Foundation and Substructure;Ground Beam and Ground Floor Slab",1,1,0.0000668673,0.0065106816,0.0136317396,3,0.0,0.0002441219,0.0068493151,0.0030769231,0.1009375,0.0167101828,0.0431145431,0.0067264574,0.0,0.0667410777
1.4.2.11.12.5-64,THGF6050,"Ground Slab TH7 - Erect side formwork",7112,"CCGTD1_IPS",TT_Task,"58732",-,-,-,100,TK_Complete,06/03/2018,07/02/2018,07/03/2018,27/04/2018,"THGF6020 FF","THGF6020","THGF6060 FF","THGF6060",135,168,136,180,31,39,31,42,22,,"CCGT D1_Integrated Programme Schedule;CIVILS;CONSTRUCTION;Power Island - Turbine Hall Area;Foundation and Substructure;Ground Beam and Ground Floor Slab",1,1,0.0000638034,0.006103764,0.0140386572,1,0.0,0.0003274603,0.0068493151,0.0030769231,0.0963125,0.0156657963,0.0444015444,0.0022421525,0.0,0.1008888228
1.4.2.11.12.5-65,THGF6060,"Ground Slab TH7 - Fix rebar for pile caps and ground beams install cast-in / embed items",7112,"CCGTD1_IPS",TT_Task,"58732",-,-,-,100,TK_Complete,06/03/2018,07/02/2018,09/03/2018,27/04/2018,"THGF6050 FF,CLPSUP05 FS","THGF6050,CLPSUP05","THGF6070 FS,THGF6080 FF","THGF6070,THGF6080",135,168,136,180,31,39,31,42,22,,"CCGT D1_Integrated Programme Schedule;CIVILS;CONSTRUCTION;Power Island - Turbine Hall Area;Foundation and Substructure;Ground Beam and Ground Floor Slab",2,2,0.0000630582,0.0059003052,0.014242116,3,0.0,0.000361367,0.0136986301,0.0061538462,0.0951875,0.0151436031,0.045045045,0.0067264574,0.0,0.1147820238
1.4.2.11.12.5-66,THGF6070,"Ground Slab TH7 - Pour caps and beams to the level of ground floor slab underside",7112,"CCGTD1_IPS",TT_Task,"58732",-,-,-,100,TK_Complete,29/05/2018,29/03/2018,29/05/2018,28/04/2018,"THGF6060 FS","THGF6060","","",147,175,147,180,34,41,34,42,29,,"CCGT D1_Integrated Programme Schedule;CIVILS;CONSTRUCTION;Power Island - Turbine Hall Area;Foundation and Substructure;Ground Beam and Ground Floor Slab",1,0,0.0,0.0,0.0144455748,0,0.0,0.0000812387,0.0068493151,0.0,0.0,0.0,0.0456885457,0.0,0.0,0.0
1.4.2.11.12.5-67,THGF6080,"Ground Slab TH7 - Prepare CJ",7112,"CCGTD1_IPS",TT_Task,"58732",-,-,-,100,TK_Complete,23/04/2018,17/04/2018,30/04/2018,27/04/2018,"THGF6060 FF","THGF6060","THGF6090 FF","THGF6090",142,178,143,180,33,41,33,42,25,,"CCGT D1_Integrated Programme Schedule;CIVILS;CONSTRUCTION;Power Island - Turbine Hall Area;Foundation and Substructure;Ground Beam and Ground Floor Slab",1,1,0.0000583795,0.0054933876,0.0144455748,7,0.6,0.0003889777,0.0068493151,0.0030769231,0.088125,0.0140992167,0.0456885457,0.0156950673,0.6,0.1260954607
1.4.2.11.12.5-68,THGF6090,"Ground Slab TH7 - Fix ground floor slab rebar",7112,"CCGTD1_IPS",TT_Task,"58732",-,-,-,100,TK_Complete,23/04/2018,17/04/2018,30/04/2018,27/04/2018,"THGF6080 FF","THGF6080","THGF6100 FS","THGF6100",142,178,143,180,33,41,33,42,25,,"CCGT D1_Integrated Programme Schedule;CIVILS;CONSTRUCTION;Power Island - Turbine Hall Area;Foundation and Substructure;Ground Beam and Ground Floor Slab",1,1,0.0000565163,0.0052899288,0.0146490336,7,0.6,0.0004124848,0.0068493151,0.0030769231,0.0853125,0.0135770235,0.0463320463,0.0156950673,0.6,0.1357274367
1.4.2.11.12.5-69,THGF6100,"Ground Slab TH7 - Pour ground slab",7112,"CCGTD1_IPS",TT_Task,"58732",-,-,-,100,TK_Complete,29/05/2018,28/04/2018,29/05/2018,28/04/2018,"THGF6090 FS","THGF6090","THGF6110 FS,THSS0080 FS,THSS0090 FS","THGF6110,THSS0080,THSS0090",147,180,147,180,34,42,34,42,29,,"CCGT D1_Integrated Programme Schedule;CIVILS;CONSTRUCTION;Power Island - Turbine Hall Area;Foundation and Substructure;Ground Beam and Ground Floor Slab",1,3,0.0000545703,0.00508647,0.0148524924,0,1.0,0.0000812387,0.0068493151,0.0092307692,0.082375,0.0130548303,0.046975547,0.0,1.0,0.0
1.4.2.11.12.5-70,THGF6110,"Ground Slab TH7 - Strike formwork (if any)",7112,"CCGTD1_IPS",TT_Task,"58732",-,-,-,100,TK_Complete,31/05/2018,30/04/2018,31/05/2018,30/04/2018,"THGF6100 FS","THGF6100","","",148,180,148,180,34,42,34,42,29,,"CCGT D1_Integrated Programme Schedule;CIVILS;CONSTRUCTION;Power Island - Turbine Hall Area;Foundation and Substructure;Ground Beam and Ground Floor Slab",1,0,0.0,0.0,0.0150559512,0,1.0,0.0000812387,0.0068493151,0.0,0.0,0.0,0.0476190476,0.0,1.0,0.0
1.4.2.11.12.5-71,THGF7020,"Ground Slab TH8 - Blinding to the profile of pile caps and ground beams",7112,"CCGTD1_IPS",TT_Task,"58732",-,-,-,100,TK_Complete,20/03/2018,19/01/2018,22/03/2018,22/01/2018,"THGF7040 FS","THGF7040","","",137,166,138,166,32,38,32,38,23,,"CCGT D1_Integrated Programme Schedule;CIVILS;CONSTRUCTION;Power Island - Turbine Hall Area;Foundation and Substructure;Ground Beam and Ground Floor Slab",1,0,0.0,0.0,0.0004069176,2,1.0,0.0001452414,0.0068493151,0.0,0.0,0.0,0.0012870013,0.0044843049,1.0,0.02622497
1.4.2.11.12.5-72,THGF7030,"Ground Slab TH8 - Trim pile and prepare pile head",7112,"CCGTD1_IPS",TT_Task,"58732",-,-,-,100,TK_Complete,14/03/2018,13/01/2018,17/03/2018,17/01/2018,"","","THGF7040 FF","THGF7040",137,165,137,165,31,38,32,38,22,,"CCGT D1_Integrated Programme Schedule;CIVILS;CONSTRUCTION;Power Island - Turbine Hall Area;Foundation and Substructure;Ground Beam and Ground Floor Slab",0,1,0.0,0.0052899288,0.0,3,1.0,0.0000812387,0.0,0.0030769231,0.0,0.0135770235,0.0,0.0067264574,1.0,0.0
1.4.2.11.12.5-73,THGF7040,"Ground Slab TH8 - Capping plate and rebar starter",7112,"CCGTD1_IPS",TT_Task,"58732",-,-,-,100,TK_Complete,15/03/2018,15/01/2018,19/03/2018,18/01/2018,"THGF7030 FF","THGF7030","THGF8020 FS,THGF7020 FS","THGF8020,THGF7020",137,165,137,165,32,38,32,38,22,,"CCGT D1_Integrated Programme Schedule;CIVILS;CONSTRUCTION;Power Island - Turbine Hall Area;Foundation and Substructure;Ground Beam and Ground Floor Slab",1,2,0.0000010351,0.00508647,0.0002034588,4,1.0,0.0001503957,0.0068493151,0.0061538462,0.0015625,0.0130548303,0.0006435006,0.0089686099,1.0,0.0283369572
1.4.2.11.12.5-74,THGF7050,"Ground Slab TH8 - Erect side formwork",7112,"CCGTD1_IPS",TT_Task,"58732",-,-,-,100,TK_Complete,23/04/2018,26/02/2018,12/05/2018,23/03/2018,"","","THGF7060 FF,THPT0010 SS","THGF7060,THPT0010",142,171,145,175,33,40,33,40,25,,"CCGT D1_Integrated Programme Schedule;CIVILS;CONSTRUCTION;Power Island - Turbine Hall Area;Foundation and Substructure;Ground Beam and Ground Floor Slab",0,1,0.0,0.0103763988,0.0,19,0.8,0.0000812387,0.0,0.0030769231,0.0,0.0266318538,0.0,0.0426008969,0.8,0.0
1.4.2.11.12.5-75,THGF7060,"Ground Slab TH8 - Fix rebar for pile caps and ground beams install cast-in / embed items",7112,"CCGTD1_IPS",TT_Task,"58732",-,-,-,100,TK_Complete,23/04/2018,26/02/2018,12/05/2018,23/03/2018,"THGF7050 FF,CLPSUP05 FS","THGF7050,CLPSUP05","THPT0010 FF,THGF7080 FF,THGF7070 FS","THPT0010,THGF7080,THGF7070",142,171,145,175,33,40,33,40,25,,"CCGT D1_Integrated Programme Schedule;CIVILS;CONSTRUCTION;Power Island - Turbine Hall Area;Foundation and Substructure;Ground Beam and Ground Floor Slab",2,2,0.0000034572,0.01017294,0.0004069176,19,0.6,0.0001576956,0.0136986301,0.0061538462,0.00521875,0.0261096606,0.0012870013,0.0426008969,0.6,0.0313280804
1.4.2.11.12.5-76,THGF7070,"Ground Slab TH8 - Pour caps and beams to the level of ground floor slab underside",7112,"CCGTD1_IPS",TT_Task,"58732",-,-,-,100,TK_Complete,14/05/2018,24/03/2018,14/05/2018,24/03/2018,"THGF7060 FS","THGF7060","","",145,175,145,175,34,40,34,40,27,,"CCGT D1_Integrated Programme Schedule;CIVILS;CONSTRUCTION;Power Island - Turbine Hall Area;Foundation and Substructure;Ground Beam and Ground Floor Slab",1,0,0.0,0.0,0.0006103764,0,1.0,0.0000812387,0.0068493151,0.0,0.0,0.0,0.0019305019,0.0,1.0,0.0
1.4.2.11.12.5-77,THGF7080,"Ground Slab TH8 - Prepare CJ",7112,"CCGTD1_IPS",TT_Task,"58732",-,-,-,100,TK_Complete,07/05/2018,14/03/2018,12/05/2018,23/03/2018,"THGF7060 FF","THGF7060","THGF7090 FF,THGF7010 SS,THGF7010 FF","THGF7090,THGF7010,THGF7010",144,173,145,175,33,40,33,40,27,,"CCGT D1_Integrated Programme Schedule;CIVILS;CONSTRUCTION;Power Island - Turbine Hall Area;Foundation and Substructure;Ground Beam and Ground Floor Slab",1,1,0.000005279,0.0097660224,0.0006103764,5,0.8,0.0002154558,0.0068493151,0.0030769231,0.00796875,0.0250652742,0.0019305019,0.0112107623,0.8,0.0549951992
1.4.2.11.12.5-78,THGF7090,"Ground Slab TH8 - Fix ground floor slab rebar",7112,"CCGTD1_IPS",TT_Task,"58732",-,-,-,100,TK_Complete,07/05/2018,14/03/2018,12/05/2018,23/03/2018,"THGF7080 FF","THGF7080","THGF7100 FS","THGF7100",144,173,145,175,33,40,33,40,27,,"CCGT D1_Integrated Programme Schedule;CIVILS;CONSTRUCTION;Power Island - Turbine Hall Area;Foundation and Substructure;Ground Beam and Ground Floor Slab",1,1,0.0000071008,0.0095625636,0.0008138352,5,0.6,0.0002646705,0.0068493151,0.0030769231,0.01071875,0.0245430809,0.0025740026,0.0112107623,0.6,0.0751608431
1.4.2.11.12.5-79,THGF7100,"Ground Slab TH8 - Pour ground slab",7112,"CCGTD1_IPS",TT_Task,"58732",-,-,-,100,TK_Complete,14/05/2018,24/03/2018,14/05/2018,24/03/2018,"THGF7090 FS","THGF7090","THGF7110 FS,THSS2010 FS","THGF7110,THSS2010",145,175,145,175,34,40,34,40,27,,"CCGT D1_Integrated Programme Schedule;CIVILS;CONSTRUCTION;Power Island - Turbine Hall Area;Foundation and Substructure;Ground Beam and Ground Floor Slab",1,2,0.0000088397,0.0093591048,0.001017294,0,1.0,0.0000812387,0.0068493151,0.0061538462,0.01334375,0.0240208877,0.0032175032,0.0,1.0,0.0
1.4.2.11.12.5-80,THGF7110,"Ground Slab TH8 - Strike formwork (if any)",7112,"CCGTD1_IPS",TT_Task,"58732",-,-,-,100,TK_Complete,15/05/2018,25/03/2018,15/05/2018,25/03/2018,"THGF7100 FS","THGF7100","","",145,175,145,175,34,40,34,40,28,,"CCGT D1_Integrated Programme Schedule;CIVILS;CONSTRUCTION;Power Island - Turbine Hall Area;Foundation and Substructure;Ground Beam and Ground Floor Slab",1,0,0.0,0.0,0.0012207528,0,1.0,0.0000812387,0.0068493151,0.0,0.0,0.0,0.0038610039,0.0,1.0,0.0
1.4.2.11.12.5-81,THGF8020,"Ground Slab TH9 - Blinding to the profile of pile caps and ground beams",7112,"CCGTD1_IPS",TT_Task,"58732",-,-,-,100,TK_Complete,20/03/2018,19/01/2018,22/03/2018,22/01/2018,"THGF8010 FS,THGF7040 FS,THGF8040 FS","THGF8010,THGF7040,THGF8040","THGF8050 FS","THGF8050",137,166,138,166,32,38,32,38,23,,"CCGT D1_Integrated Programme Schedule;CIVILS;CONSTRUCTION;Power Island - Turbine Hall Area;Foundation and Substructure;Ground Beam and Ground Floor Slab",2,1,0.0000032295,0.0046795524,0.0008138352,2,1.0,0.000209244,0.0136986301,0.0030769231,0.004875,0.0120104439,0.0025740026,0.0044843049,1.0,0.0524499399
1.4.2.11.12.5-82,THGF8030,"Ground Slab TH9 - Trim pile and prepare pile head",7112,"CCGTD1_IPS",TT_Task,"58732",-,-,-,100,TK_Complete,14/03/2018,13/01/2018,17/03/2018,17/01/2018,"","","THGF8040 FF","THGF8040",137,165,137,165,31,38,32,38,22,,"CCGT D1_Integrated Programme Schedule;CIVILS;CONSTRUCTION;Power Island - Turbine Hall Area;Foundation and Substructure;Ground Beam and Ground Floor Slab",0,1,0.0,0.0158697864,0.0,3,1.0,0.0000812387,0.0,0.0030769231,0.0,0.0407310705,0.0,0.0067264574,1.0,0.0
1.4.2.11.12.5-83,THGF8040,"Ground Slab TH9 - Capping plate and rebar starter",7112,"CCGTD1_IPS",TT_Task,"58732",-,-,-,100,TK_Complete,15/03/2018,15/01/2018,19/03/2018,18/01/2018,"THGF8030 FF","THGF8030","THGF9020 FS,THGF8020 FS","THGF9020,THGF8020",137,165,137,165,32,38,32,38,22,,"CCGT D1_Integrated Programme Schedule;CIVILS;CONSTRUCTION;Power Island - Turbine Hall Area;Foundation and Substructure;Ground Beam and Ground Floor Slab",1,2,0.0000031881,0.0156663276,0.0002034588,4,1.0,0.0001503957,0.0068493151,0.0061538462,0.0048125,0.0402088773,0.0006435006,0.0089686099,1.0,0.0283369572
1.4.2.11.12.5-84,THGF8050,"Ground Slab TH9 - Erect side formwork",7112,"CCGTD1_IPS",TT_Task,"58732",-,-,-,100,TK_Complete,23/04/2018,26/02/2018,12/05/2018,23/03/2018,"THGF8020 FS","THGF8020","THGF8060 FF,THPT0010 SS","THGF8060,THPT0010",142,171,145,175,33,40,33,40,25,,"CCGT D1_Integrated Programme Schedule;CIVILS;CONSTRUCTION;Power Island - Turbine Hall Area;Foundation and Substructure;Ground Beam and Ground Floor Slab",1,1,0.0000039748,0.0044760936,0.001017294,19,0.6,0.0002593786,0.0068493151,0.0030769231,0.006,0.0114882507,0.0032175032,0.0426008969,0.6,0.0729924654
1.4.2.11.12.5-85,THGF8060,"Ground Slab TH9 - Fix rebar for pile caps and ground beams install cast-in / embed items",7112,"CCGTD1_IPS",TT_Task,"58732",-,-,-,100,TK_Complete,23/04/2018,26/02/2018,12/05/2018,23/03/2018,"THGF8050 FF,CLPSUP05 FS","THGF8050,CLPSUP05","THGF8070 FS,THPT0010 FF,THGF8080 FF","THGF8070,THPT0010,THGF8080",142,171,145,175,33,40,33,40,25,,"CCGT D1_Integrated Programme Schedule;CIVILS;CONSTRUCTION;Power Island - Turbine Hall Area;Foundation and Substructure;Ground Beam and Ground Floor Slab",2,2,0.0000052169,0.0042726348,0.0014242116,19,0.4,0.0003094253,0.0136986301,0.0061538462,0.007875,0.0109660574,0.0045045045,0.0426008969,0.4,0.0934990108
1.4.2.11.12.5-86,THGF8070,"Ground Slab TH9 - Pour caps and beams to the level of ground floor slab underside",7112,"CCGTD1_IPS",TT_Task,"58732",-,-,-,100,TK_Complete,14/05/2018,24/03/2018,14/05/2018,24/03/2018,"THGF8060 FS","THGF8060","","",145,175,145,175,34,40,34,40,27,,"CCGT D1_Integrated Programme Schedule;CIVILS;CONSTRUCTION;Power Island - Turbine Hall Area;Foundation and Substructure;Ground Beam and Ground Floor Slab",1,0,0.0,0.0,0.0016276704,0,1.0,0.0000812387,0.0068493151,0.0,0.0,0.0,0.0051480051,0.0,1.0,0.0
1.4.2.11.12.5-87,THGF8080,"Ground Slab TH9 - Prepare CJ",7112,"CCGTD1_IPS",TT_Task,"58732",-,-,-,100,TK_Complete,07/05/2018,14/03/2018,12/05/2018,23/03/2018,"THGF8060 FF","THGF8060","THGF8090 FF,THGF8010 SS,THGF8010 FF","THGF8090,THGF8010,THGF8010",144,173,145,175,33,40,33,40,27,,"CCGT D1_Integrated Programme Schedule;CIVILS;CONSTRUCTION;Power Island - Turbine Hall Area;Foundation and Substructure;Ground Beam and Ground Floor Slab",1,1,0.0000054239,0.0038657172,0.0016276704,5,1.0,0.0003448098,0.0068493151,0.0030769231,0.0081875,0.009921671,0.0051480051,0.0112107623,1.0,0.107997733
1.4.2.11.12.5-88,THGF8090,"Ground Slab TH9 - Fix ground floor slab rebar",7112,"CCGTD1_IPS",TT_Task,"58732",-,-,-,100,TK_Complete,07/05/2018,14/03/2018,12/05/2018,23/03/2018,"THGF8080 FF","THGF8080","THGF8100 FS","THGF8100",144,173,145,175,33,40,33,40,27,,"CCGT D1_Integrated Programme Schedule;CIVILS;CONSTRUCTION;Power Island - Turbine Hall Area;Foundation and Substructure;Ground Beam and Ground Floor Slab",1,1,0.000005838,0.0036622584,0.0018311292,5,0.6,0.0003749063,0.0068493151,0.0030769231,0.0088125,0.0093994778,0.0057915058,0.0112107623,0.6,0.1203297322
1.4.2.11.12.5-89,THGF8100,"Ground Slab TH9 - Pour ground slab",7112,"CCGTD1_IPS",TT_Task,"58732",-,-,-,100,TK_Complete,14/05/2018,24/03/2018,14/05/2018,24/03/2018,"THGF8090 FS","THGF8090","THGF8110 FS,THSS2020 FS","THGF8110,THSS2020",145,175,145,175,34,40,34,40,27,,"CCGT D1_Integrated Programme Schedule;CIVILS;CONSTRUCTION;Power Island - Turbine Hall Area;Foundation and Substructure;Ground Beam and Ground Floor Slab",1,2,0.0000061692,0.0034587996,0.002034588,0,1.0,0.0000812387,0.0068493151,0.0061538462,0.0093125,0.0088772846,0.0064350064,0.0,1.0,0.0
1.4.2.11.12.5-90,THGF8110,"Ground Slab TH9 - Strike formwork (if any)",7112,"CCGTD1_IPS",TT_Task,"58732",-,-,-,100,TK_Complete,26/11/2018,25/03/2018,26/11/2018,25/03/2018,"THGF8100 FS","THGF8100","","",173,175,173,175,40,40,40,40,39,,"CCGT D1_Integrated Programme Schedule;CIVILS;CONSTRUCTION;Power Island - Turbine Hall Area;Foundation and Substructure;Ground Beam and Ground Floor Slab",1,0,0.0,0.0,0.0022380468,0,1.0,0.0000812387,0.0068493151,0.0,0.0,0.0,0.0070785071,0.0,1.0,0.0
1.4.2.11.12.5-91,THGF9010,"Ground Slab TH10 - Backfill the interface area between Cond.Polishing Pit",7112,"CCGTD1_IPS",TT_Task,"58732",-,-,-,100,TK_Complete,06/12/2018,07/09/2018,08/12/2018,09/09/2018,"THPP0200 FF","THPP0200","THGF9020 FF","THGF9020",175,199,175,199,40,46,40,46,42,,"CCGT D1_Integrated Programme Schedule;CIVILS;CONSTRUCTION;Power Island - Turbine Hall Area;Foundation and Substructure;Ground Beam and Ground Floor Slab",1,1,0.0000687719,0.0138351984,0.0211597152,2,1.0,0.0001444774,0.0068493151,0.0030769231,0.1038125,0.0355091384,0.0669240669,0.0044843049,1.0,0.0259119162
1.4.2.11.12.5-92,THGF9020,"Ground Slab TH10 - Blinding to the profile of pile caps and ground beams",7112,"CCGTD1_IPS",TT_Task,"58732",-,-,-,100,TK_Complete,26/11/2018,07/09/2018,28/11/2018,09/09/2018,"THGF8040 FS,THGF9010 FF","THGF8040,THGF9010","THGF9050 FS","THGF9050",173,199,174,199,40,46,40,46,40,,"CCGT D1_Integrated Programme Schedule;CIVILS;CONSTRUCTION;Power Island - Turbine Hall Area;Foundation and Substructure;Ground Beam and Ground Floor Slab",2,1,0.0000721256,0.0136317396,0.0217700916,2,1.0,0.0002682902,0.0136986301,0.0030769231,0.108875,0.0349869452,0.0688545689,0.0044843049,1.0,0.0766440052
1.4.2.11.12.5-93,THGF9030,"Ground Slab TH10 - Trim pile and prepare pile head",7112,"CCGTD1_IPS",TT_Task,"58732",-,-,-,100,TK_Complete,27/12/2017,04/12/2017,30/12/2017,07/12/2017,"","","THGF9040 FF","THGF9040",126,159,126,159,29,37,29,37,16,,"CCGT D1_Integrated Programme Schedule;CIVILS;CONSTRUCTION;Power Island - Turbine Hall Area;Foundation and Substructure;Ground Beam and Ground Floor Slab",0,1,0.0,0.0002034588,0.0,3,1.0,0.0000812387,0.0,0.0030769231,0.0,0.0005221932,0.0,0.0067264574,1.0,0.0
1.4.2.11.12.5-94,THGF9040,"Ground Slab TH10 - Capping plate and rebar starter",7112,"CCGTD1_IPS",TT_Task,"58732",-,-,-,100,TK_Complete,28/12/2017,05/12/2017,02/01/2018,08/12/2017,"THGF9030 FF","THGF9030","","",126,159,126,160,29,37,29,37,16,,"CCGT D1_Integrated Programme Schedule;CIVILS;CONSTRUCTION;Power Island - Turbine Hall Area;Foundation and Substructure;Ground Beam and Ground Floor Slab",1,0,0.0,0.0,0.0002034588,5,1.0,0.0001503957,0.0068493151,0.0,0.0,0.0,0.0006435006,0.0112107623,1.0,0.0283369572
1.4.2.11.12.5-95,THGF9050,"Ground Slab TH10 - Erect side formwork",7112,"CCGTD1_IPS",TT_Task,"58732",-,-,-,100,TK_Complete,26/11/2018,10/09/2018,27/11/2018,29/09/2018,"THGF9020 FS","THGF9020","THGF9060 FS","THGF9060",173,199,173,202,40,46,40,47,40,,"CCGT D1_Integrated Programme Schedule;CIVILS;CONSTRUCTION;Power Island - Turbine Hall Area;Foundation and Substructure;Ground Beam and Ground Floor Slab",1,1,0.000070428,0.0134282808,0.0219735504,1,0.0,0.000309732,0.0068493151,0.0030769231,0.1063125,0.034464752,0.0694980695,0.0022421525,0.0,0.0936246925
1.4.2.11.12.5-96,THGF9060,"Ground Slab TH10 - Fix rebar for pile caps and ground beams install cast-in / embed items",7112,"CCGTD1_IPS",TT_Task,"58732",-,-,-,100,TK_Complete,26/11/2018,10/09/2018,29/11/2018,29/09/2018,"THGF9050 FS,CLPSUP05 FS","THGF9050,CLPSUP05","THGF9070 FS,THGF9080 FS","THGF9070,THGF9080",173,199,174,202,40,46,40,47,40,,"CCGT D1_Integrated Programme Schedule;CIVILS;CONSTRUCTION;Power Island - Turbine Hall Area;Foundation and Substructure;Ground Beam and Ground Floor Slab",2,2,0.0000694447,0.013224822,0.0221770092,3,0.0,0.0003471575,0.0136986301,0.0061538462,0.104828125,0.0339425587,0.0701415701,0.0067264574,0.0,0.108959704
1.4.2.11.12.5-97,THGF9070,"Ground Slab TH10 - Pour caps and beams to the level of ground floor slab underside",7112,"CCGTD1_IPS",TT_Task,"58732",-,-,-,100,TK_Complete,05/12/2018,30/09/2018,05/12/2018,30/09/2018,"THGF9060 FS,THGF9090 FS","THGF9060,THGF9090","","",175,202,175,202,40,47,40,47,42,,"CCGT D1_Integrated Programme Schedule;CIVILS;CONSTRUCTION;Power Island - Turbine Hall Area;Foundation and Substructure;Ground Beam and Ground Floor Slab",2,0,0.0,0.0,0.0227873856,0,1.0,0.0000812387,0.0136986301,0.0,0.0,0.0,0.0720720721,0.0,1.0,0.0
1.4.2.11.12.5-98,THGF9080,"Ground Slab TH10 - Prepare CJ",7112,"CCGTD1_IPS",TT_Task,"58732",-,-,-,100,TK_Complete,26/11/2018,30/09/2018,26/11/2018,30/09/2018,"THGF9060 FS","THGF9060","THGF9090 FS","THGF9090",173,202,173,202,40,47,40,47,40,,"CCGT D1_Integrated Programme Schedule;CIVILS;CONSTRUCTION;Power Island - Turbine Hall Area;Foundation and Substructure;Ground Beam and Ground Floor Slab",1,1,0.0000630271,0.0130213632,0.022380468,0,1.0,0.0000812387,0.0068493151,0.0030769231,0.095140625,0.0334203655,0.0707850708,0.0,1.0,0.0
1.4.2.11.12.5-99,THGF9090,"Ground Slab TH10 - Fix ground floor slab rebar",7112,"CCGTD1_IPS",TT_Task,"58732",-,-,-,100,TK_Complete,01/12/2018,10/09/2018,04/12/2018,29/09/2018,"THGF9080 FS","THGF9080","THGF9100 FS,THGF9070 FS","THGF9100,THGF9070",174,199,174,202,40,46,40,47,41,,"CCGT D1_Integrated Programme Schedule;CIVILS;CONSTRUCTION;Power Island - Turbine Hall Area;Foundation and Substructure;Ground Beam and Ground Floor Slab",1,2,0.0000610811,0.0128179044,0.0225839268,3,0.0,0.0001503957,0.0068493151,0.0061538462,0.092203125,0.0328981723,0.0714285714,0.0067264574,0.0,0.0283369572
1.4.2.11.12.5-100,THGF9100,"Ground Slab TH10 - Pour ground slab",7112,"CCGTD1_IPS",TT_Task,"58732",-,-,-,100,TK_Complete,05/12/2018,30/09/2018,05/12/2018,30/09/2018,"THGF9090 FS","THGF9090","THGF9110 FS,THSS2030 FS,THSS2040 FS,THPD0010 FF,THEL0010 FF,THSS1030 FS","THGF9110,THSS2030,THSS2040,THPD0010,THEL0010,THSS1030",175,202,175,202,40,47,40,47,42,,"CCGT D1_Integrated Programme Schedule;CIVILS;CONSTRUCTION;Power Island - Turbine Hall Area;Foundation and Substructure;Ground Beam and Ground Floor Slab",1,4,0.0000589695,0.0124109868,0.0227873856,0,1.0,0.0000812387,0.0068493151,0.0123076923,0.089015625,0.0318537859,0.0720720721,0.0,1.0,0.0
1.4.2.11.12.5-101,THGF9110,"Ground Slab TH10 - Strike formwork (if any)",7112,"CCGTD1_IPS",TT_Task,"58732",-,-,-,100,TK_Complete,27/11/2018,02/10/2018,27/11/2018,02/10/2018,"THGF9100 FS","THGF9100","RCWL0120 FS","RCWL0120",173,202,173,202,40,47,40,47,40,,"CCGT D1_Integrated Programme Schedule;CIVILS;CONSTRUCTION;Power Island - Turbine Hall Area;Foundation and Substructure;Ground Beam and Ground Floor Slab",1,1,0.0000239729,0.0012207528,0.0229908444,0,1.0,0.0000812387,0.0068493151,0.0030769231,0.0361875,0.0031331593,0.0727155727,0.0,1.0,0.0
1.4.2.11.12.6,58731,"Turbine Table",7112,"CCGTD1_IPS",WBS,"58730",,,,100,Complete,04/08/2017,04/08/2017,17/04/2018,20/04/2018,,,,,105,142,141,179,24,33,33,41,,,"CCGT D1_Integrated Programme Schedule;CIVILS;CONSTRUCTION;Power Island - Turbine Hall Area;Foundation and Substructure"
1.4.2.11.12.6-1,THTT0010,"Turbine Table - Further excavate from +4.1 to +3.0",7112,"CCGTD1_IPS",TT_Task,"58731",-,-,-,100,TK_Complete,04/08/2017,04/08/2017,22/08/2017,28/08/2017,"","","THCP0010 FS,THTT1010 FS,S1020 SS","THCP0010,THTT1010,S1020",105,142,107,145,24,33,25,33,9,,"CCGT D1_Integrated Programme Schedule;CIVILS;CONSTRUCTION;Power Island - Turbine Hall Area;Foundation and Substructure;Turbine Table",0,2,0.0,0.0445574771,0.0,18,0.6,0.0000812387,0.0,0.0061538462,0.0,0.1143603133,0.0,0.0403587444,0.6,0.0
1.4.2.11.12.6-2,THTT1010,"Turbine Table TT1 - Trim pile and prepare pile head",7112,"CCGTD1_IPS",TT_Task,"58731",-,-,-,100,TK_Complete,25/09/2017,25/09/2017,29/09/2017,29/09/2017,"THTT0010 FS","THTT0010","THTT1020 FS,THTT2010 FS","THTT1020,THTT2010",112,149,113,150,26,34,26,35,11,,"CCGT D1_Integrated Programme Schedule;CIVILS;CONSTRUCTION;Power Island - Turbine Hall Area;Foundation and Substructure;Turbine Table",1,2,0.0000052169,0.0443540183,0.0002034588,4,1.0,0.0001365643,0.0068493151,0.0061538462,0.007875,0.1138381201,0.0006435006,0.0089686099,1.0,0.0226695658
1.4.2.11.12.6-3,THTT1020,"Turbine Table TT1 - Capping plate and rebar starter",7112,"CCGTD1_IPS",TT_Task,"58731",-,-,-,100,TK_Complete,30/09/2017,30/09/2017,07/10/2017,07/10/2017,"THTT1010 FS","THTT1010","THTT0020 FS","THTT0020",113,150,114,151,26,35,26,35,12,,"CCGT D1_Integrated Programme Schedule;CIVILS;CONSTRUCTION;Power Island - Turbine Hall Area;Foundation and Substructure;Turbine Table",1,1,0.0000061692,0.0425228891,0.0004069176,7,1.0,0.0001393565,0.0068493151,0.0030769231,0.0093125,0.1091383812,0.0012870013,0.0156950673,1.0,0.0238136717
1.4.2.11.12.6-4,THTT1030,"Turbine Table TT1 Bottom Half - Erect side formwork (if any)",7112,"CCGTD1_IPS",TT_Task,"58731",-,-,-,100,TK_Complete,26/10/2017,26/10/2017,27/10/2017,27/10/2017,"THTT0020 FS","THTT0020","THTT1040 FS","THTT1040",117,153,117,154,27,35,27,35,13,,"CCGT D1_Integrated Programme Schedule;CIVILS;CONSTRUCTION;Power Island - Turbine Hall Area;Foundation and Substructure;Turbine Table",1,1,0.0001095271,0.0421159715,0.0042726348,1,1.0,0.0003382438,0.0068493151,0.0030769231,0.1653333333,0.1080939948,0.0135135135,0.0022421525,1.0,0.1053073435
1.4.2.11.12.6-5,THTT0020,"Turbine Table - Cast blinding concrete",7112,"CCGTD1_IPS",TT_Task,"58731",-,-,-,100,TK_Complete,27/11/2017,23/10/2017,28/11/2017,24/10/2017,"PROMA060 FS,THTT1020 FS,THCP0015 FS","PROMA060,THTT1020,THCP0015","THTT1030 FS","THTT1030",121,153,121,153,28,35,28,35,15,,"CCGT D1_Integrated Programme Schedule;CIVILS;CONSTRUCTION;Power Island - Turbine Hall Area;Foundation and Substructure;Turbine Table",3,1,0.0001017846,0.0423194303,0.004069176,1,1.0,0.0003018587,0.0205479452,0.0030769231,0.1536458333,0.108616188,0.0128700129,0.0022421525,1.0,0.0903986193
1.4.2.11.12.6-6,THTT1040,"Turbine Table TT1 Bottom Half - Fix rebar",7112,"CCGTD1_IPS",TT_Task,"58731",-,-,-,100,TK_Complete,30/10/2017,30/10/2017,01/11/2017,01/11/2017,"THTT1030 FS","THTT1030","THTT1050 FS","THTT1050",117,154,118,154,27,36,27,36,13,,"CCGT D1_Integrated Programme Schedule;CIVILS;CONSTRUCTION;Power Island - Turbine Hall Area;Foundation and Substructure;Turbine Table",1,1,0.0001171869,0.0419125127,0.0044760936,2,1.0,0.00036936,0.0068493151,0.0030769231,0.1768958333,0.1075718016,0.0141570142,0.0044843049,1.0,0.1180571671
1.4.2.11.12.6-7,THTT1060,"Turbine Table TT1 Bottom Half - Pour concrete (mono pour)",7112,"CCGTD1_IPS",TT_Task,"58731",-,-,-,100,TK_Complete,02/12/2017,02/12/2017,02/12/2017,02/12/2017,"THTT1050 FS,THTT1110 FS,THTT2050 FS,THTT2110 FS,THTT3050 FS,THTT3110 FS,THTT4050 FS,THTT5050 FS,THTT5110 FS","THTT1050,THTT1110,THTT2050,THTT2110,THTT3050,THTT3110,THTT4050,THTT5050,THTT5110","THTT1200 FS,THGF3010 FS,THGF5010 FS,THGF1030 FS,THGF6030 FS,THCP0010 FS","THTT1200,THGF3010,THGF5010,THGF1030,THGF6030,THCP0010",122,159,122,159,28,37,28,37,15,,"CCGT D1_Integrated Programme Schedule;CIVILS;CONSTRUCTION;Power Island - Turbine Hall Area;Foundation and Substructure;Turbine Table",9,6,0.0000340386,0.0333672431,0.0115971516,0,1.0,0.0000812387,0.0616438356,0.0184615385,0.0513819444,0.0856396867,0.0366795367,0.0,1.0,0.0
1.4.2.11.12.6-8,THTT1050,"Turbine Table TT1 Bottom Half - Close formwork (if any)",7112,"CCGTD1_IPS",TT_Task,"58731",-,-,-,100,TK_Complete,02/11/2017,02/11/2017,02/11/2017,02/11/2017,"THTT1040 FS","THTT1040","THTT1060 FS,THTT1090 FS,THTT2030 FS,THTT1120 FS,THTT2060 FS,THTT2120 FS,THTT3060 FS,THTT3120 FS,THTT4060 FS,THTT5060 FS,THTT5120 FS","THTT1060,THTT1090,THTT2030,THTT1120,THTT2060,THTT2120,THTT3060,THTT3120,THTT4060,THTT5060,THTT5120",118,154,118,154,27,36,27,36,13,,"CCGT D1_Integrated Programme Schedule;CIVILS;CONSTRUCTION;Power Island - Turbine Hall Area;Foundation and Substructure;Turbine Table",1,11,0.0001247638,0.0417090539,0.0046795524,0,1.0,0.0000812387,0.0068493151,0.0338461538,0.1883333333,0.1070496084,0.0148005148,0.0,1.0,0.0
1.4.2.11.12.6-9,THTT1100,"Turbine Table TT1 Upper Half - Fix rebar",7112,"CCGTD1_IPS",TT_Task,"58731",-,-,-,100,TK_Complete,04/11/2017,04/11/2017,07/11/2017,07/11/2017,"THTT1090 FF,CLPSUP05 FS","THTT1090,CLPSUP05","THTT1110 FS","THTT1110",118,155,118,155,27,36,27,36,14,,"CCGT D1_Integrated Programme Schedule;CIVILS;CONSTRUCTION;Power Island - Turbine Hall Area;Foundation and Substructure;Turbine Table",2,1,0.0000090675,0.0370295015,0.0052899288,3,1.0,0.0001956846,0.0136986301,0.0030769231,0.0136875,0.0950391645,0.0167310167,0.0067264574,1.0,0.0468939769
1.4.2.11.12.6-10,THTT1110,"Turbine Table TT1 Upper Half - Close formwork (if any)",7112,"CCGTD1_IPS",TT_Task,"58731",-,-,-,100,TK_Complete,08/11/2017,08/11/2017,08/11/2017,08/11/2017,"THTT1100 FS","THTT1100","THTT1120 FS,THTT1060 FS,THTT2060 FS,THTT2120 FS,THTT3060 FS,THTT3120 FS,THTT4060 FS,THTT5060 FS,THTT5120 FS","THTT1120,THTT1060,THTT2060,THTT2120,THTT3060,THTT3120,THTT4060,THTT5060,THTT5120",119,155,119,155,27,36,27,36,14,,"CCGT D1_Integrated Programme Schedule;CIVILS;CONSTRUCTION;Power Island - Turbine Hall Area;Foundation and Substructure;Turbine Table",1,9,0.0000154851,0.0368260427,0.0054933876,0,1.0,0.0000812387,0.0068493151,0.0276923077,0.023375,0.0945169713,0.0173745174,0.0,1.0,0.0
1.4.2.11.12.6-11,THTT1120,"Turbine Table TT1 Upper Half - Pour concrete (mono pour)",7112,"CCGTD1_IPS",TT_Task,"58731",-,-,-,100,TK_Complete,02/12/2017,02/12/2017,02/12/2017,02/12/2017,"THTT1110 FS,THTT1050 FS,THTT2050 FS,THTT2110 FS,THTT3050 FS,THTT3110 FS,THTT4050 FS,THTT5050 FS,THTT5110 FS","THTT1110,THTT1050,THTT2050,THTT2110,THTT3050,THTT3110,THTT4050,THTT5050,THTT5110","THTT1200 FS,THGF5010 FS,THGF3010 FS,THGF1030 FS,THGF6030 FS,THCP0010 FS","THTT1200,THGF5010,THGF3010,THGF1030,THGF6030,THCP0010",122,159,122,159,28,37,28,37,15,,"CCGT D1_Integrated Programme Schedule;CIVILS;CONSTRUCTION;Power Island - Turbine Hall Area;Foundation and Substructure;Turbine Table",9,6,0.0000340386,0.0333672431,0.0115971516,0,1.0,0.0000812387,0.0616438356,0.0184615385,0.0513819444,0.0856396867,0.0366795367,0.0,1.0,0.0
1.4.2.11.12.6-12,THTT1090,"Turbine Table TT1 -  Install cast-in / embed items",7112,"CCGTD1_IPS",TT_Task,"58731",-,-,-,100,TK_Complete,03/11/2017,03/11/2017,06/11/2017,06/11/2017,"THTT1050 FS","THTT1050","THTT1100 FF","THTT1100",118,155,118,155,27,36,27,36,14,,"CCGT D1_Integrated Programme Schedule;CIVILS;CONSTRUCTION;Power Island - Turbine Hall Area;Foundation and Substructure;Turbine Table",1,1,0.0000019874,0.0372329603,0.0048830112,3,1.0,0.0001331065,0.0068493151,0.0030769231,0.003,0.0955613577,0.0154440154,0.0067264574,1.0,0.0212527179
1.4.2.11.12.6-13,THTT2010,"Turbine Table TT2 - Trim pile and prepare pile head",7112,"CCGTD1_IPS",TT_Task,"58731",-,-,-,100,TK_Complete,30/09/2017,30/09/2017,07/10/2017,07/10/2017,"THTT1010 FS","THTT1010","THTT2020 FS,THTT3010 FS","THTT2020,THTT3010",113,150,114,151,26,35,26,35,12,,"CCGT D1_Integrated Programme Schedule;CIVILS;CONSTRUCTION;Power Island - Turbine Hall Area;Foundation and Substructure;Turbine Table",1,2,0.0000079081,0.0425228891,0.0004069176,7,1.0,0.0001393565,0.0068493151,0.0061538462,0.0119375,0.1091383812,0.0012870013,0.0156950673,1.0,0.0238136717
1.4.2.11.12.6-14,THTT2020,"Turbine Table TT2 - Capping plate and rebar starter",7112,"CCGTD1_IPS",TT_Task,"58731",-,-,-,100,TK_Complete,09/10/2017,09/10/2017,13/10/2017,13/10/2017,"THTT2010 FS","THTT2010","THTT2030 FS","THTT2030",114,151,115,152,26,35,26,35,12,,"CCGT D1_Integrated Programme Schedule;CIVILS;CONSTRUCTION;Power Island - Turbine Hall Area;Foundation and Substructure;Turbine Table",1,1,0.0000138289,0.0410986775,0.0006103764,4,1.0,0.0001405562,0.0068493151,0.0030769231,0.020875,0.1054830287,0.0019305019,0.0089686099,1.0,0.0243052294
1.4.2.11.12.6-15,THTT2030,"Turbine Table TT2 Bottom Half - Erect side formwork (if any)",7112,"CCGTD1_IPS",TT_Task,"58731",-,-,-,100,TK_Complete,03/11/2017,03/11/2017,04/11/2017,04/11/2017,"THTT2020 FS,THTT1050 FS","THTT2020,THTT1050","THTT2040 FS","THTT2040",118,155,118,155,27,36,27,36,14,,"CCGT D1_Integrated Programme Schedule;CIVILS;CONSTRUCTION;Power Island - Turbine Hall Area;Foundation and Substructure;Turbine Table",2,1,0.0000402446,0.0408952187,0.0052899288,1,1.0,0.0002181921,0.0136986301,0.0030769231,0.06075,0.1049608355,0.0167310167,0.0022421525,1.0,0.0561164037
1.4.2.11.12.6-16,THTT2040,"Turbine Table TT2 Bottom Half - Fix rebar",7112,"CCGTD1_IPS",TT_Task,"58731",-,-,-,100,TK_Complete,06/11/2017,06/11/2017,08/11/2017,08/11/2017,"THTT2030 FS","THTT2030","THTT2050 FS","THTT2050",118,155,119,155,27,36,27,36,14,,"CCGT D1_Integrated Programme Schedule;CIVILS;CONSTRUCTION;Power Island - Turbine Hall Area;Foundation and Substructure;Turbine Table",1,1,0.0000474489,0.0406917599,0.0054933876,2,1.0,0.0002670046,0.0068493151,0.0030769231,0.071625,0.1044386423,0.0173745174,0.0044843049,1.0,0.0761172211
1.4.2.11.12.6-17,THTT2060,"Turbine Table TT2 Bottom Half - Pour concrete (mono pour)",7112,"CCGTD1_IPS",TT_Task,"58731",-,-,-,100,TK_Complete,02/12/2017,02/12/2017,02/12/2017,02/12/2017,"THTT2050 FS,THTT1050 FS,THTT1110 FS,THTT2110 FS,THTT3050 FS,THTT3110 FS,THTT4050 FS,THTT5050 FS,THTT5110 FS","THTT2050,THTT1050,THTT1110,THTT2110,THTT3050,THTT3110,THTT4050,THTT5050,THTT5110","THTT2200 FS,THGF3010 FS,THGF5010 FS,THGF1030 FS,THGF6030 FS,THCP0010 FS","THTT2200,THGF3010,THGF5010,THGF1030,THGF6030,THCP0010",122,159,122,159,28,37,28,37,15,,"CCGT D1_Integrated Programme Schedule;CIVILS;CONSTRUCTION;Power Island - Turbine Hall Area;Foundation and Substructure;Turbine Table",9,6,0.0000335418,0.0335707019,0.0115971516,0,1.0,0.0000812387,0.0616438356,0.0184615385,0.0506319444,0.0861618799,0.0366795367,0.0,1.0,0.0
1.4.2.11.12.6-18,THTT2050,"Turbine Table TT2 Bottom Half - Close formwork (if any)",7112,"CCGTD1_IPS",TT_Task,"58731",-,-,-,100,TK_Complete,09/11/2017,09/11/2017,09/11/2017,09/11/2017,"THTT2040 FS","THTT2040","THTT2060 FS,THTT2090 FS,THTT3030 FS,THTT1060 FS,THTT1120 FS,THTT2120 FS,THTT3060 FS,THTT3120 FS,THTT4060 FS,THTT5060 FS,THTT5120 FS","THTT2060,THTT2090,THTT3030,THTT1060,THTT1120,THTT2120,THTT3060,THTT3120,THTT4060,THTT5060,THTT5120",119,155,119,155,27,36,27,36,14,,"CCGT D1_Integrated Programme Schedule;CIVILS;CONSTRUCTION;Power Island - Turbine Hall Area;Foundation and Substructure;Turbine Table",1,11,0.0000545703,0.0404883011,0.0056968464,0,1.0,0.0000812387,0.0068493151,0.0338461538,0.082375,0.1039164491,0.018018018,0.0,1.0,0.0
1.4.2.11.12.6-19,THTT2100,"Turbine Table TT2 Upper Half - Fix rebar",7112,"CCGTD1_IPS",TT_Task,"58731",-,-,-,100,TK_Complete,11/11/2017,11/11/2017,14/11/2017,14/11/2017,"THTT2090 FF,CLPSUP05 FS","THTT2090,CLPSUP05","THTT2110 FS","THTT2110",119,156,119,156,27,36,27,36,14,,"CCGT D1_Integrated Programme Schedule;CIVILS;CONSTRUCTION;Power Island - Turbine Hall Area;Foundation and Substructure;Turbine Table",2,1,0.0000092745,0.0370295015,0.0063072228,3,1.0,0.0001956846,0.0136986301,0.0030769231,0.014,0.0950391645,0.0199485199,0.0067264574,1.0,0.0468939769
1.4.2.11.12.6-20,THTT2110,"Turbine Table TT2 Upper Half - Close formwork (if any)",7112,"CCGTD1_IPS",TT_Task,"58731",-,-,-,100,TK_Complete,15/11/2017,15/11/2017,15/11/2017,15/11/2017,"THTT2100 FS","THTT2100","THTT2120 FS,THTT1060 FS,THTT1120 FS,THTT2060 FS,THTT3060 FS,THTT3120 FS,THTT4060 FS,THTT5060 FS,THTT5120 FS","THTT2120,THTT1060,THTT1120,THTT2060,THTT3060,THTT3120,THTT4060,THTT5060,THTT5120",120,156,120,156,28,36,28,36,14,,"CCGT D1_Integrated Programme Schedule;CIVILS;CONSTRUCTION;Power Island - Turbine Hall Area;Foundation and Substructure;Turbine Table",1,9,0.0000154851,0.0368260427,0.0065106816,0,1.0,0.0000812387,0.0068493151,0.0276923077,0.023375,0.0945169713,0.0205920206,0.0,1.0,0.0
1.4.2.11.12.6-21,THTT2120,"Turbine Table TT2 Upper Half - Pour concrete (mono pour)",7112,"CCGTD1_IPS",TT_Task,"58731",-,-,-,100,TK_Complete,02/12/2017,02/12/2017,02/12/2017,02/12/2017,"THTT2110 FS,THTT1050 FS,THTT1110 FS,THTT2050 FS,THTT3050 FS,THTT3110 FS,THTT4050 FS,THTT5050 FS,THTT5110 FS","THTT2110,THTT1050,THTT1110,THTT2050,THTT3050,THTT3110,THTT4050,THTT5050,THTT5110","THTT2200 FS,THGF5010 FS,THGF3010 FS,THGF1030 FS,THGF6030 FS,THCP0010 FS","THTT2200,THGF5010,THGF3010,THGF1030,THGF6030,THCP0010",122,159,122,159,28,37,28,37,15,,"CCGT D1_Integrated Programme Schedule;CIVILS;CONSTRUCTION;Power Island - Turbine Hall Area;Foundation and Substructure;Turbine Table",9,6,0.0000335418,0.0335707019,0.0115971516,0,1.0,0.0000812387,0.0616438356,0.0184615385,0.0506319444,0.0861618799,0.0366795367,0.0,1.0,0.0
1.4.2.11.12.6-22,THTT2090,"Turbine Table TT2 - Install cast-in / embed items",7112,"CCGTD1_IPS",TT_Task,"58731",-,-,-,100,TK_Complete,10/11/2017,10/11/2017,13/11/2017,13/11/2017,"THTT2050 FS","THTT2050","THTT2100 FF","THTT2100",119,156,119,156,27,36,27,36,14,,"CCGT D1_Integrated Programme Schedule;CIVILS;CONSTRUCTION;Power Island - Turbine Hall Area;Foundation and Substructure;Turbine Table",1,1,0.0000024014,0.0372329603,0.0059003052,3,1.0,0.0001331065,0.0068493151,0.0030769231,0.003625,0.0955613577,0.0186615187,0.0067264574,1.0,0.0212527179
1.4.2.11.12.6-23,THTT3010,"Turbine Table TT3 - Trim pile and prepare pile head",7112,"CCGTD1_IPS",TT_Task,"58731",-,-,-,100,TK_Complete,09/10/2017,09/10/2017,13/10/2017,13/10/2017,"THTT2010 FS","THTT2010","THTT3020 FS,THTT4010 FS","THTT3020,THTT4010",114,151,115,152,26,35,26,35,12,,"CCGT D1_Integrated Programme Schedule;CIVILS;CONSTRUCTION;Power Island - Turbine Hall Area;Foundation and Substructure;Turbine Table",1,2,0.0000024842,0.0408952187,0.0006103764,4,1.0,0.0001405562,0.0068493151,0.0061538462,0.00375,0.1049608355,0.0019305019,0.0089686099,1.0,0.0243052294
1.4.2.11.12.6-24,THTT3020,"Turbine Table TT3 - Capping plate and rebar starter",7112,"CCGTD1_IPS",TT_Task,"58731",-,-,-,100,TK_Complete,14/10/2017,14/10/2017,19/10/2017,19/10/2017,"THTT3010 FS","THTT3010","THTT3030 FS","THTT3030",115,152,116,152,26,35,27,35,12,,"CCGT D1_Integrated Programme Schedule;CIVILS;CONSTRUCTION;Power Island - Turbine Hall Area;Foundation and Substructure;Turbine Table",1,1,0.0000084878,0.0398779247,0.0008138352,5,1.0,0.0001410708,0.0068493151,0.0030769231,0.0128125,0.1023498695,0.0025740026,0.0112107623,1.0,0.0245160822
1.4.2.11.12.6-25,THTT3030,"Turbine Table TT3 Bottom Half - Erect side formwork (if any)",7112,"CCGTD1_IPS",TT_Task,"58731",-,-,-,100,TK_Complete,10/11/2017,10/11/2017,11/11/2017,11/11/2017,"THTT3020 FS,THTT2050 FS","THTT3020,THTT2050","THTT3040 FS","THTT3040",119,156,119,156,27,36,27,36,14,,"CCGT D1_Integrated Programme Schedule;CIVILS;CONSTRUCTION;Power Island - Turbine Hall Area;Foundation and Substructure;Turbine Table",2,1,0.000031467,0.0396744659,0.0063072228,1,1.0,0.0002186334,0.0136986301,0.0030769231,0.0475,0.1018276762,0.0199485199,0.0022421525,1.0,0.0562972056
1.4.2.11.12.6-26,THTT3040,"Turbine Table TT3 Bottom Half - Fix rebar",7112,"CCGTD1_IPS",TT_Task,"58731",-,-,-,100,TK_Complete,13/11/2017,13/11/2017,15/11/2017,15/11/2017,"THTT3030 FS","THTT3030","THTT3050 FS","THTT3050",119,156,120,156,27,36,28,36,14,,"CCGT D1_Integrated Programme Schedule;CIVILS;CONSTRUCTION;Power Island - Turbine Hall Area;Foundation and Substructure;Turbine Table",1,1,0.0000382158,0.0394710071,0.0065106816,2,1.0,0.0002673708,0.0068493151,0.0030769231,0.0576875,0.101305483,0.0205920206,0.0044843049,1.0,0.0762672652
1.4.2.11.12.6-27,THTT3060,"Turbine Table TT3 Bottom Half - Pour concrete (mono pour)",7112,"CCGTD1_IPS",TT_Task,"58731",-,-,-,100,TK_Complete,02/12/2017,02/12/2017,02/12/2017,02/12/2017,"THTT3050 FS,THTT1050 FS,THTT1110 FS,THTT2050 FS,THTT2110 FS,THTT3110 FS,THTT4050 FS,THTT5050 FS,THTT5110 FS","THTT3050,THTT1050,THTT1110,THTT2050,THTT2110,THTT3110,THTT4050,THTT5050,THTT5110","THTT3200 FS,THGF3010 FS,THGF5010 FS,THGF1030 FS,THGF6030 FS,THCP0010 FS","THTT3200,THGF3010,THGF5010,THGF1030,THGF6030,THCP0010",122,159,122,159,28,37,28,37,15,,"CCGT D1_Integrated Programme Schedule;CIVILS;CONSTRUCTION;Power Island - Turbine Hall Area;Foundation and Substructure;Turbine Table",9,6,0.0000417811,0.0331637843,0.0115971516,0,1.0,0.0000812387,0.0616438356,0.0184615385,0.0630694444,0.0851174935,0.0366795367,0.0,1.0,0.0
1.4.2.11.12.6-28,THTT3050,"Turbine Table TT3 Bottom Half - Close formwork (if any)",7112,"CCGTD1_IPS",TT_Task,"58731",-,-,-,100,TK_Complete,16/11/2017,16/11/2017,16/11/2017,16/11/2017,"THTT3040 FS","THTT3040","THTT3060 FS,THTT3090 FS,THTT5030 FS,THTT1060 FS,THTT1120 FS,THTT2060 FS,THTT2120 FS,THTT3120 FS,THTT4060 FS,THTT5060 FS,THTT5120 FS","THTT3060,THTT3090,THTT5030,THTT1060,THTT1120,THTT2060,THTT2120,THTT3120,THTT4060,THTT5060,THTT5120",120,156,120,156,28,36,28,36,14,,"CCGT D1_Integrated Programme Schedule;CIVILS;CONSTRUCTION;Power Island - Turbine Hall Area;Foundation and Substructure;Turbine Table",1,11,0.0000448818,0.0392675483,0.0067141404,0,1.0,0.0000812387,0.0068493151,0.0338461538,0.06775,0.1007832898,0.0212355212,0.0,1.0,0.0
1.4.2.11.12.6-29,THTT3100,"Turbine Table TT3 Upper Half - Fix rebar",7112,"CCGTD1_IPS",TT_Task,"58731",-,-,-,100,TK_Complete,18/11/2017,18/11/2017,21/11/2017,21/11/2017,"THTT3090 FF,CLPSUP05 FS","THTT3090,CLPSUP05","THTT3110 FS","THTT3110",120,157,120,157,28,36,28,36,14,,"CCGT D1_Integrated Programme Schedule;CIVILS;CONSTRUCTION;Power Island - Turbine Hall Area;Foundation and Substructure;Turbine Table",2,1,0.0000094815,0.0370295015,0.0073245168,3,1.0,0.0001956846,0.0136986301,0.0030769231,0.0143125,0.0950391645,0.0231660232,0.0067264574,1.0,0.0468939769
1.4.2.11.12.6-30,THTT3110,"Turbine Table TT3 Upper Half - Close formwork (if any)",7112,"CCGTD1_IPS",TT_Task,"58731",-,-,-,100,TK_Complete,22/11/2017,22/11/2017,22/11/2017,22/11/2017,"THTT3100 FS","THTT3100","THTT3120 FS,THTT1060 FS,THTT1120 FS,THTT2060 FS,THTT2120 FS,THTT3060 FS,THTT4060 FS,THTT5060 FS,THTT5120 FS","THTT3120,THTT1060,THTT1120,THTT2060,THTT2120,THTT3060,THTT4060,THTT5060,THTT5120",121,157,121,157,28,36,28,36,14,,"CCGT D1_Integrated Programme Schedule;CIVILS;CONSTRUCTION;Power Island - Turbine Hall Area;Foundation and Substructure;Turbine Table",1,9,0.0000154851,0.0368260427,0.0075279756,0,1.0,0.0000812387,0.0068493151,0.0276923077,0.023375,0.0945169713,0.0238095238,0.0,1.0,0.0
1.4.2.11.12.6-31,THTT3120,"Turbine Table TT3 Upper Half - Pour concrete (mono pour)",7112,"CCGTD1_IPS",TT_Task,"58731",-,-,-,100,TK_Complete,02/12/2017,02/12/2017,02/12/2017,02/12/2017,"THTT3110 FS,THTT1050 FS,THTT1110 FS,THTT2050 FS,THTT2110 FS,THTT3050 FS,THTT4050 FS,THTT5050 FS,THTT5110 FS","THTT3110,THTT1050,THTT1110,THTT2050,THTT2110,THTT3050,THTT4050,THTT5050,THTT5110","THTT3200 FS,THGF5010 FS,THGF3010 FS,THGF1030 FS,THGF6030 FS,THCP0010 FS","THTT3200,THGF5010,THGF3010,THGF1030,THGF6030,THCP0010",122,159,122,159,28,37,28,37,15,,"CCGT D1_Integrated Programme Schedule;CIVILS;CONSTRUCTION;Power Island - Turbine Hall Area;Foundation and Substructure;Turbine Table",9,6,0.0000417811,0.0331637843,0.0115971516,0,1.0,0.0000812387,0.0616438356,0.0184615385,0.0630694444,0.0851174935,0.0366795367,0.0,1.0,0.0
1.4.2.11.12.6-32,THTT3090,"Turbine Table TT3 - Install cast-in / embed items",7112,"CCGTD1_IPS",TT_Task,"58731",-,-,-,100,TK_Complete,17/11/2017,17/11/2017,20/11/2017,20/11/2017,"THTT3050 FS","THTT3050","THTT3100 FF","THTT3100",120,157,120,157,28,36,28,36,14,,"CCGT D1_Integrated Programme Schedule;CIVILS;CONSTRUCTION;Power Island - Turbine Hall Area;Foundation and Substructure;Turbine Table",1,1,0.0000028155,0.0372329603,0.0069175992,3,1.0,0.0001331065,0.0068493151,0.0030769231,0.00425,0.0955613577,0.0218790219,0.0067264574,1.0,0.0212527179
1.4.2.11.12.6-33,THTT4010,"Turbine Table TT4 - Trim pile and prepare pile head",7112,"CCGTD1_IPS",TT_Task,"58731",-,-,-,100,TK_Complete,14/10/2017,14/10/2017,19/10/2017,19/10/2017,"THTT3010 FS","THTT3010","THTT4020 FS,THTT5010 FS","THTT4020,THTT5010",115,152,116,152,26,35,27,35,12,,"CCGT D1_Integrated Programme Schedule;CIVILS;CONSTRUCTION;Power Island - Turbine Hall Area;Foundation and Substructure;Turbine Table",1,2,0.0000019874,0.0392675483,0.0008138352,5,1.0,0.0001410708,0.0068493151,0.0061538462,0.003,0.1007832898,0.0025740026,0.0112107623,1.0,0.0245160822
1.4.2.11.12.6-34,THTT4020,"Turbine Table TT4 - Capping plate and rebar starter",7112,"CCGTD1_IPS",TT_Task,"58731",-,-,-,100,TK_Complete,20/10/2017,20/10/2017,24/10/2017,23/10/2017,"THTT4010 FS","THTT4010","THTT4030 FS","THTT4030",116,153,116,153,27,35,27,35,13,,"CCGT D1_Integrated Programme Schedule;CIVILS;CONSTRUCTION;Power Island - Turbine Hall Area;Foundation and Substructure;Turbine Table",1,1,0.0000081152,0.0374364191,0.001017294,4,1.0,0.0001412914,0.0068493151,0.0030769231,0.01225,0.0960835509,0.0032175032,0.0089686099,1.0,0.0246064832
1.4.2.11.12.6-35,THTT4030,"Turbine Table TT4 - Erect side formwork (if any)",7112,"CCGTD1_IPS",TT_Task,"58731",-,-,-,100,TK_Complete,24/11/2017,24/11/2017,25/11/2017,25/11/2017,"THTT4020 FS,THTT5050 FS","THTT4020,THTT5050","THTT4040 FS","THTT4040",121,158,121,158,28,36,28,36,14,,"CCGT D1_Integrated Programme Schedule;CIVILS;CONSTRUCTION;Power Island - Turbine Hall Area;Foundation and Substructure;Turbine Table",2,1,0.0000183833,0.0372329603,0.0083418108,1,1.0,0.0002188165,0.0136986301,0.0030769231,0.02775,0.0955613577,0.0263835264,0.0022421525,1.0,0.0563722277
1.4.2.11.12.6-36,THTT4040,"Turbine Table TT4 - Fix rebar and cast-in / embed items",7112,"CCGTD1_IPS",TT_Task,"58731",-,-,-,100,TK_Complete,29/11/2017,29/11/2017,01/12/2017,01/12/2017,"THTT4030 FS,CLPSUP05 FS","THTT4030,CLPSUP05","THTT4050 FF","THTT4050",122,158,122,159,28,37,28,37,15,,"CCGT D1_Integrated Programme Schedule;CIVILS;CONSTRUCTION;Power Island - Turbine Hall Area;Foundation and Substructure;Turbine Table",2,1,0.0000247595,0.0370295015,0.0087487284,2,1.0,0.0002682957,0.0136986301,0.0030769231,0.037375,0.0950391645,0.0276705277,0.0044843049,1.0,0.0766462539
1.4.2.11.12.6-37,THTT4060,"Turbine Table TT4 - Pour concrete (mono pour)",7112,"CCGTD1_IPS",TT_Task,"58731",-,-,-,100,TK_Complete,02/12/2017,02/12/2017,02/12/2017,02/12/2017,"THTT4050 FS,THTT1050 FS,THTT1110 FS,THTT2050 FS,THTT2110 FS,THTT3050 FS,THTT3110 FS,THTT5050 FS,THTT5110 FS","THTT4050,THTT1050,THTT1110,THTT2050,THTT2110,THTT3050,THTT3110,THTT5050,THTT5110","THTT4200 FS,THGF3010 FS,THGF5010 FS,THGF1030 FS,THGF6030 FS,THCP0010 FS","THTT4200,THGF3010,THGF5010,THGF1030,THGF6030,THCP0010",122,159,122,159,28,37,28,37,15,,"CCGT D1_Integrated Programme Schedule;CIVILS;CONSTRUCTION;Power Island - Turbine Hall Area;Foundation and Substructure;Turbine Table",9,6,0.0000519803,0.0319430315,0.0115971516,0,1.0,0.0000812387,0.0616438356,0.0184615385,0.0784652778,0.0819843342,0.0366795367,0.0,1.0,0.0
1.4.2.11.12.6-38,THTT4050,"Turbine Table TT4 - Close formwork (if any)",7112,"CCGTD1_IPS",TT_Task,"58731",-,-,-,100,TK_Complete,01/12/2017,01/12/2017,01/12/2017,01/12/2017,"THTT4040 FF","THTT4040","THTT4060 FS,THTT1060 FS,THTT1120 FS,THTT2060 FS,THTT2120 FS,THTT3060 FS,THTT3120 FS,THTT5060 FS,THTT5120 FS","THTT4060,THTT1060,THTT1120,THTT2060,THTT2120,THTT3060,THTT3120,THTT5060,THTT5120",122,159,122,159,28,37,28,37,15,,"CCGT D1_Integrated Programme Schedule;CIVILS;CONSTRUCTION;Power Island - Turbine Hall Area;Foundation and Substructure;Turbine Table",1,9,0.0000304733,0.0368260427,0.0089521872,0,1.0,0.0000812387,0.0068493151,0.0276923077,0.046,0.0945169713,0.0283140283,0.0,1.0,0.0
1.4.2.11.12.6-39,THTT5010,"Turbine Table TT5 - Trim pile and prepare pile head",7112,"CCGTD1_IPS",TT_Task,"58731",-,-,-,100,TK_Complete,20/10/2017,20/10/2017,24/10/2017,24/10/2017,"THTT4010 FS","THTT4010","THTT5020 FS","THTT5020",116,153,116,153,27,35,27,35,13,,"CCGT D1_Integrated Programme Schedule;CIVILS;CONSTRUCTION;Power Island - Turbine Hall Area;Foundation and Substructure;Turbine Table",1,1,0.0000014491,0.0388606307,0.001017294,4,1.0,0.0001412914,0.0068493151,0.0030769231,0.0021875,0.0997389034,0.0032175032,0.0089686099,1.0,0.0246064832
1.4.2.11.12.6-40,THTT5020,"Turbine Table TT5 - Capping plate and rebar starter",7112,"CCGTD1_IPS",TT_Task,"58731",-,-,-,100,TK_Complete,26/10/2017,26/10/2017,31/10/2017,31/10/2017,"THTT5010 FS","THTT5010","THTT5030 FS","THTT5030",117,153,117,154,27,35,27,36,13,,"CCGT D1_Integrated Programme Schedule;CIVILS;CONSTRUCTION;Power Island - Turbine Hall Area;Foundation and Substructure;Turbine Table",1,1,0.0000091089,0.0386571719,0.0012207528,5,1.0,0.0002015272,0.0068493151,0.0030769231,0.01375,0.0992167102,0.0038610039,0.0112107623,1.0,0.0492879884
1.4.2.11.12.6-41,THTT5030,"Turbine Table TT5 Bottom Half - Erect side formwork (if any)",7112,"CCGTD1_IPS",TT_Task,"58731",-,-,-,100,TK_Complete,17/11/2017,17/11/2017,18/11/2017,18/11/2017,"THTT5020 FS,THTT3050 FS","THTT5020,THTT3050","THTT5040 FS","THTT5040",120,157,120,157,28,36,28,36,14,,"CCGT D1_Integrated Programme Schedule;CIVILS;CONSTRUCTION;Power Island - Turbine Hall Area;Foundation and Substructure;Turbine Table",2,1,0.0000266227,0.0384537131,0.0075279756,1,1.0,0.0002701045,0.0136986301,0.0030769231,0.0401875,0.098694517,0.0238095238,0.0022421525,1.0,0.0773873925
1.4.2.11.12.6-42,THTT5040,"Turbine Table TT5 Bottom Half - Fix rebar",7112,"CCGTD1_IPS",TT_Task,"58731",-,-,-,100,TK_Complete,20/11/2017,20/11/2017,22/11/2017,22/11/2017,"THTT5030 FS","THTT5030","THTT5050 FS","THTT5050",120,157,121,157,28,36,28,36,14,,"CCGT D1_Integrated Programme Schedule;CIVILS;CONSTRUCTION;Power Island - Turbine Hall Area;Foundation and Substructure;Turbine Table",1,1,0.0000328747,0.0382502543,0.0077314344,2,1.0,0.0003112377,0.0068493151,0.0030769231,0.049625,0.0981723238,0.0244530245,0.0044843049,1.0,0.0942416309
1.4.2.11.12.6-43,THTT5060,"Turbine Table TT5 Bottom Half - Pour concrete (mono pour)",7112,"CCGTD1_IPS",TT_Task,"58731",-,-,-,100,TK_Complete,02/12/2017,02/12/2017,02/12/2017,02/12/2017,"THTT5050 FS,THTT1110 FS,THTT1050 FS,THTT2050 FS,THTT2110 FS,THTT3050 FS,THTT3110 FS,THTT4050 FS,THTT5110 FS","THTT5050,THTT1110,THTT1050,THTT2050,THTT2110,THTT3050,THTT3110,THTT4050,THTT5110","THTT5130 FS,THGF3010 FS,THGF5010 FS,THGF1030 FS,THGF6030 FS,THCP0010 FS","THTT5130,THGF3010,THGF5010,THGF1030,THGF6030,THCP0010",122,159,122,159,28,37,28,37,15,,"CCGT D1_Integrated Programme Schedule;CIVILS;CONSTRUCTION;Power Island - Turbine Hall Area;Foundation and Substructure;Turbine Table",9,6,0.0000335418,0.0317395727,0.0115971516,0,1.0,0.0000812387,0.0616438356,0.0184615385,0.0506319444,0.081462141,0.0366795367,0.0,1.0,0.0
1.4.2.11.12.6-44,THTT5050,"Turbine Table TT5 Bottom Half - Close formwork (if any)",7112,"CCGTD1_IPS",TT_Task,"58731",-,-,-,100,TK_Complete,23/11/2017,23/11/2017,23/11/2017,23/11/2017,"THTT5040 FS","THTT5040","THTT5060 FS,THTT5090 FS,THTT4030 FS,THTT1060 FS,THTT1120 FS,THTT2060 FS,THTT2120 FS,THTT3060 FS,THTT3120 FS,THTT4060 FS,THTT5120 FS","THTT5060,THTT5090,THTT4030,THTT1060,THTT1120,THTT2060,THTT2120,THTT3060,THTT3120,THTT4060,THTT5120",121,157,121,157,28,36,28,36,14,,"CCGT D1_Integrated Programme Schedule;CIVILS;CONSTRUCTION;Power Island - Turbine Hall Area;Foundation and Substructure;Turbine Table",1,11,0.0000390439,0.0380467955,0.0079348932,0,1.0,0.0000812387,0.0068493151,0.0338461538,0.0589375,0.0976501305,0.0250965251,0.0,1.0,0.0
1.4.2.11.12.6-45,THTT5100,"Turbine Table TT5 Upper Half - Fix rebar",7112,"CCGTD1_IPS",TT_Task,"58731",-,-,-,100,TK_Complete,25/11/2017,25/11/2017,28/11/2017,30/11/2017,"THTT5090 FF,CLPSUP05 FS","THTT5090,CLPSUP05","THTT5110 FS","THTT5110",121,158,121,158,28,36,28,37,14,,"CCGT D1_Integrated Programme Schedule;CIVILS;CONSTRUCTION;Power Island - Turbine Hall Area;Foundation and Substructure;Turbine Table",2,1,0.0000097299,0.0370295015,0.0085452696,3,0.8,0.0001956846,0.0136986301,0.0030769231,0.0146875,0.0950391645,0.027027027,0.0067264574,0.8,0.0468939769
1.4.2.11.12.6-46,THTT5110,"Turbine Table TT5 Upper Half - Close formwork (if any)",7112,"CCGTD1_IPS",TT_Task,"58731",-,-,-,100,TK_Complete,29/11/2017,29/11/2017,29/11/2017,29/11/2017,"THTT5100 FS","THTT5100","THTT5120 FS,THTT1060 FS,THTT1120 FS,THTT2060 FS,THTT2120 FS,THTT3060 FS,THTT3120 FS,THTT4060 FS,THTT5060 FS","THTT5120,THTT1060,THTT1120,THTT2060,THTT2120,THTT3060,THTT3120,THTT4060,THTT5060",122,158,122,158,28,37,28,37,15,,"CCGT D1_Integrated Programme Schedule;CIVILS;CONSTRUCTION;Power Island - Turbine Hall Area;Foundation and Substructure;Turbine Table",1,9,0.0000154851,0.0368260427,0.0087487284,0,1.0,0.0000812387,0.0068493151,0.0276923077,0.023375,0.0945169713,0.0276705277,0.0,1.0,0.0
1.4.2.11.12.6-47,THTT5120,"Turbine Table TT5 Upper Half - Pour concrete (mono pour)",7112,"CCGTD1_IPS",TT_Task,"58731",-,-,-,100,TK_Complete,02/12/2017,02/12/2017,02/12/2017,02/12/2017,"THTT5110 FS,THTT1050 FS,THTT1110 FS,THTT2050 FS,THTT2110 FS,THTT3050 FS,THTT3110 FS,THTT4050 FS,THTT5050 FS","THTT5110,THTT1050,THTT1110,THTT2050,THTT2110,THTT3050,THTT3110,THTT4050,THTT5050","THTT5130 FS,THGF3010 FS,THGF5010 FS,THGF1030 FS,THGF6030 FS,THCP0010 FS","THTT5130,THGF3010,THGF5010,THGF1030,THGF6030,THCP0010",122,159,122,159,28,37,28,37,15,,"CCGT D1_Integrated Programme Schedule;CIVILS;CONSTRUCTION;Power Island - Turbine Hall Area;Foundation and Substructure;Turbine Table",9,6,0.0000335418,0.0317395727,0.0115971516,0,1.0,0.0000812387,0.0616438356,0.0184615385,0.0506319444,0.081462141,0.0366795367,0.0,1.0,0.0
1.4.2.11.12.6-48,THTT5090,"Turbine Table TT5 - Install cast-in / embed items",7112,"CCGTD1_IPS",TT_Task,"58731",-,-,-,100,TK_Complete,24/11/2017,24/11/2017,27/11/2017,29/11/2017,"THTT5050 FS","THTT5050","THTT5100 FF","THTT5100",121,158,121,158,28,36,28,37,14,,"CCGT D1_Integrated Programme Schedule;CIVILS;CONSTRUCTION;Power Island - Turbine Hall Area;Foundation and Substructure;Turbine Table",1,1,0.0000033123,0.0372329603,0.008138352,3,0.6,0.0001331065,0.0068493151,0.0030769231,0.005,0.0955613577,0.0257400257,0.0067264574,0.6,0.0212527179
1.4.2.11.12.6-49,THTT1200,"Turbine Table TT1 - Construct Plinth PL1, PL2 with cast-in / embed items",7112,"CCGTD1_IPS",TT_Task,"58731",-,-,-,100,TK_Complete,29/12/2017,20/12/2017,19/01/2018,25/01/2018,"THTT1120 FS,CLPSUP05 FS,THTT1060 FS","THTT1120,CLPSUP05,THTT1060","THSS0310 FS,THTT4200 FS","THSS0310,THTT4200",126,161,129,166,29,37,30,38,16,,"CCGT D1_Integrated Programme Schedule;CIVILS;CONSTRUCTION;Power Island - Turbine Hall Area;Foundation and Substructure;Turbine Table",3,2,0.000008405,0.0042726348,0.0120040692,21,0.0,0.0001699902,0.0205479452,0.0061538462,0.0126875,0.0109660574,0.037966538,0.0470852018,0.0,0.0363657617
1.4.2.11.12.6-50,THTT2200,"Turbine Table TT2 - Construct Plinth PL3 with cast-in / embed items",7112,"CCGTD1_IPS",TT_Task,"58731",-,-,-,100,TK_Complete,28/02/2018,29/12/2017,15/03/2018,29/01/2018,"THTT2120 FS,CLPSUP05 FS,THTT2060 FS","THTT2120,CLPSUP05,THTT2060","THSS0320 FS","THSS0320",135,163,137,167,31,38,32,39,19,,"CCGT D1_Integrated Programme Schedule;CIVILS;CONSTRUCTION;Power Island - Turbine Hall Area;Foundation and Substructure;Turbine Table",3,1,0.0000069766,0.0032553408,0.0120040692,15,0.0,0.0001561588,0.0205479452,0.0030769231,0.01053125,0.0083550914,0.037966538,0.033632287,0.0,0.0306983703
1.4.2.11.12.6-51,THTT3200,"Turbine Table TT3 - Construct Plinth PL4, 5, 6, 7, 8, 8a with cast-in / embed items",7112,"CCGTD1_IPS",TT_Task,"58731",-,-,-,100,TK_Complete,28/02/2018,29/12/2017,27/03/2018,20/04/2018,"THTT3120 FS,CLPSUP05 FS,THTT3060 FS","THTT3120,CLPSUP05,THTT3060","THSS0330 FS","THSS0330",135,163,138,179,31,38,32,41,19,,"CCGT D1_Integrated Programme Schedule;CIVILS;CONSTRUCTION;Power Island - Turbine Hall Area;Foundation and Substructure;Turbine Table",3,1,0.0000236002,0.0028484232,0.0120040692,27,0.0,0.0001805284,0.0205479452,0.0030769231,0.035625,0.007310705,0.037966538,0.0605381166,0.0,0.0406837743
1.4.2.11.12.6-52,THTT4200,"Turbine Table TT4 - Construct Plinth CEPL1, CEPL2 with cast-in / embed items",7112,"CCGTD1_IPS",TT_Task,"58731",-,-,-,100,TK_Complete,16/03/2018,16/01/2018,27/03/2018,27/01/2018,"CLPSUP05 FS,THTT4060 FS,THTT1200 FS","CLPSUP05,THTT4060,THTT1200","THSS1370 FS,THTT5130 FS","THSS1370,THTT5130",137,165,138,167,32,38,32,39,22,,"CCGT D1_Integrated Programme Schedule;CIVILS;CONSTRUCTION;Power Island - Turbine Hall Area;Foundation and Substructure;Turbine Table",3,2,0.0000224547,0.0026449644,0.0124109868,11,1.0,0.0002284001,0.0205479452,0.0061538462,0.0338958333,0.0067885117,0.0392535393,0.0246636771,1.0,0.0602990919
1.4.2.11.12.6-53,THTT5130,"Turbine Table TT5 - Construct Plinth  PL9, 10, 11, 12, 13 with cast-in / embed items",7112,"CCGTD1_IPS",TT_Task,"58731",-,-,-,100,TK_Complete,28/03/2018,19/01/2018,17/04/2018,10/02/2018,"THTT5120 FS,CLPSUP05 FS,THTT5060 FS,THTT4200 FS","THTT5120,CLPSUP05,THTT5060,THTT4200","THSS0380 FS","THSS0380",139,166,141,169,32,38,33,39,23,,"CCGT D1_Integrated Programme Schedule;CIVILS;CONSTRUCTION;Power Island - Turbine Hall Area;Foundation and Substructure;Turbine Table",4,1,0.0000063969,0.0006103764,0.0130213632,20,1.0,0.0003531413,0.0273972603,0.0030769231,0.00965625,0.0015665796,0.0411840412,0.0448430493,1.0,0.1114115524
1.4.2.12,58715,"Cooling Water System",7112,"CCGTD1_IPS",WBS,"58711",,,,100,Complete,10/09/2017,07/09/2017,21/04/2020,,,,,,110,146,246,,25,34,57,,,,"CCGT D1_Integrated Programme Schedule;CIVILS;CONSTRUCTION"
1.4.2.12.1,58728,"CNY Shutdown 2019 - Bulkhead Removal",7112,"CCGTD1_IPS",WBS,"58715",,,,,NotStart,,,,,,,,,,,,,,,,,,,"CCGT D1_Integrated Programme Schedule;CIVILS;CONSTRUCTION;Cooling Water System"
1.4.2.12.2,58727,"CNY Shutdown 2018 - Bulkhead Installation",7112,"CCGTD1_IPS",WBS,"58715",,,,,NotStart,,,,,,,,,,,,,,,,,,,"CCGT D1_Integrated Programme Schedule;CIVILS;CONSTRUCTION;Cooling Water System"
1.4.2.12.3,58726,"Outfall Apron Modification",7112,"CCGTD1_IPS",WBS,"58715",,,,100,Complete,18/04/2018,22/02/2018,21/01/2020,09/11/2019,,,,,142,170,233,260,33,39,54,60,,,"CCGT D1_Integrated Programme Schedule;CIVILS;CONSTRUCTION;Cooling Water System"
1.4.2.12.3-1,OAM10040,"Outfall Apron Modif /on Sea Bank Road - Pile Piles (PPS241-270, PPS281-329)",7112,"CCGTD1_IPS",TT_Task,"58726",-,-,-,100,TK_Complete,29/11/2018,17/09/2018,04/12/2018,03/10/2018,"","","DBC10010 FS,OAM10060 FF,OAM10010 FS","DBC10010,OAM10060,OAM10010",174,200,174,202,40,46,40,47,41,,"CCGT D1_Integrated Programme Schedule;CIVILS;CONSTRUCTION;Cooling Water System;Outfall Apron Modification",0,3,0.0,0.0197355036,0.0,5,0.0,0.0000812387,0.0,0.0092307692,0.0,0.0506527415,0.0,0.0112107623,0.0,0.0
1.4.2.12.3-2,OAM10060,"Outfall Apron Modif /on Sea Bank Road - Grout Curtain",7112,"CCGTD1_IPS",TT_Task,"58726",-,-,-,100,TK_Complete,05/12/2018,04/10/2018,12/12/2018,05/11/2018,"OAM10050 FS,OAM10040 FF","OAM10050,OAM10040","OAM10070 FS","OAM10070",175,202,176,207,40,47,41,48,41,,"CCGT D1_Integrated Programme Schedule;CIVILS;CONSTRUCTION;Cooling Water System;Outfall Apron Modification",2,1,0.0000026913,0.008138352,0.0004069176,7,0.0,0.0001588887,0.0136986301,0.0030769231,0.0040625,0.0208877285,0.0012870013,0.0156950673,0.0,0.0318169344
1.4.2.12.3-3,OAM10070,"Outfall Apron Modif - Grout Curtain (as temporary cut off from Zone B and behind Outfall side wall)",7112,"CCGTD1_IPS",TT_Task,"58726",-,-,-,100,TK_Complete,26/11/2018,25/10/2018,03/12/2018,01/11/2018,"OAM10060 FS","OAM10060","OAM10080 FS,DBC10040 FS","OAM10080,DBC10040",173,205,174,206,40,48,40,48,39,,"CCGT D1_Integrated Programme Schedule;CIVILS;CONSTRUCTION;Cooling Water System;Outfall Apron Modification",1,2,0.0000042232,0.0079348932,0.0006103764,7,1.0,0.000216471,0.0068493151,0.0061538462,0.006375,0.0203655352,0.0019305019,0.0156950673,1.0,0.0554111834
1.4.2.12.3-4,OAM10010,"Outfall Apron Modif /behind the crest wall - Remove rock armour and crest wall",7112,"CCGTD1_IPS",TT_Task,"58726",-,-,-,100,TK_Complete,27/08/2018,08/10/2018,03/09/2018,10/10/2018,"ICMt1BA8 FS,GENSUB61 FS,OAM10040 FS","ICMt1BA8,GENSUB61,OAM10040","OAM10020 FS","OAM10020",160,203,161,203,37,47,37,47,35,,"CCGT D1_Integrated Programme Schedule;CIVILS;CONSTRUCTION;Cooling Water System;Outfall Apron Modification",3,1,0.0000029811,0.0006103764,0.0048830112,7,1.0,0.0002413567,0.0205479452,0.0030769231,0.0045,0.0015665796,0.0154440154,0.0156950673,1.0,0.0656080421
1.4.2.12.3-5,OAM10020,"Outfall Apron Modif /behind the crest wall - Rock fill to +5.7mPD to form temporary working platform",7112,"CCGTD1_IPS",TT_Task,"58726",-,-,-,100,TK_Complete,27/08/2018,10/10/2018,30/08/2018,12/10/2018,"OAM10010 FS","OAM10010","EV017050 FS","EV017050",160,203,161,204,37,47,37,47,35,,"CCGT D1_Integrated Programme Schedule;CIVILS;CONSTRUCTION;Cooling Water System;Outfall Apron Modification",1,1,0.0000020702,0.0004069176,0.00508647,3,1.0,0.0002867288,0.0068493151,0.0030769231,0.003125,0.0010443864,0.0160875161,0.0067264574,1.0,0.0841991883
1.4.2.12.3-6,OAM10030,"Outfall Apron Modif /behind the crest wall - Pipe Piles (PPS271-280)",7112,"CCGTD1_IPS",TT_Task,"58726",-,-,-,100,TK_Complete,26/11/2018,22/10/2018,28/11/2018,24/10/2018,"EV017050 FS","EV017050","","",173,205,174,205,40,47,40,48,39,,"CCGT D1_Integrated Programme Schedule;CIVILS;CONSTRUCTION;Cooling Water System;Outfall Apron Modification",1,0,0.0,0.0,0.0054933876,2,1.0,0.0003584685,0.0068493151,0.0,0.0,0.0,0.0173745174,0.0044843049,1.0,0.11359437
1.4.2.12.3-7,OAM10050,"Outfall Apron Modif /behind the crest wall - Grout Curtain",7112,"CCGTD1_IPS",TT_Task,"58726",-,-,-,100,TK_Complete,26/11/2018,27/10/2018,04/12/2018,05/11/2018,"","","OAM10060 FS","OAM10060",173,206,174,207,40,48,40,48,39,,"CCGT D1_Integrated Programme Schedule;CIVILS;CONSTRUCTION;Cooling Water System;Outfall Apron Modification",0,1,0.0,0.0083418108,0.0,8,0.8,0.0000812387,0.0,0.0030769231,0.0,0.0214099217,0.0,0.0179372197,0.8,0.0
1.4.2.12.3-8,OAM10080,"Outfall Apron Modif - Pumping Test and assessment report to BD",7112,"CCGTD1_IPS",TT_Task,"58726",-,-,-,100,TK_Complete,26/11/2018,08/11/2018,13/12/2018,21/12/2018,"OAM10070 FS,EV036010 FS","OAM10070,EV036010","OAM10085 FS,OAM10090 FS","OAM10085,OAM10090",173,207,176,214,40,48,41,49,39,,"CCGT D1_Integrated Programme Schedule;CIVILS;CONSTRUCTION;Cooling Water System;Outfall Apron Modification",2,2,0.0000024014,0.0024415056,0.001017294,17,0.0,0.0002350726,0.0136986301,0.0061538462,0.003625,0.0062663185,0.0032175032,0.0381165919,0.0,0.0630331447
1.4.2.12.3-9,OAM10090,"Outfall Apron Modif - Excavate to 0.5m below the shoring layer",7112,"CCGTD1_IPS",TT_Task,"58726",-,-,-,100,TK_Complete,26/01/2019,04/01/2019,28/01/2019,12/01/2019,"OAM10080 FS","OAM10080","OAM10100 FS","OAM10100",182,216,182,217,42,50,42,50,45,,"CCGT D1_Integrated Programme Schedule;CIVILS;CONSTRUCTION;Cooling Water System;Outfall Apron Modification",1,1,0.0000002484,0.002034588,0.0012207528,2,0.6,0.0000950408,0.0068493151,0.0030769231,0.000375,0.0052219321,0.0038610039,0.0044843049,0.6,0.0056553977
1.4.2.12.3-10,OAM10100,"Outfall Apron Modif - Install the shoring",7112,"CCGTD1_IPS",TT_Task,"58726",-,-,-,100,TK_Complete,29/01/2019,14/01/2019,31/01/2019,22/01/2019,"OAM10090 FS","OAM10090","OAM10110 FS","OAM10110",182,217,183,218,42,50,42,51,46,,"CCGT D1_Integrated Programme Schedule;CIVILS;CONSTRUCTION;Cooling Water System;Outfall Apron Modification",1,1,0.0000003726,0.0018311292,0.0014242116,2,0.4,0.0001621525,0.0068493151,0.0030769231,0.0005625,0.0046997389,0.0045045045,0.0044843049,0.4,0.0331542861
1.4.2.12.3-11,OAM10110,"Outfall Apron Modif - Excavate to final excavation level +1.5 mPD (Zone C)",7112,"CCGTD1_IPS",TT_Task,"58726",-,-,-,100,TK_Complete,01/04/2019,14/02/2019,02/04/2019,01/03/2019,"OAM10100 FS,OAM10085 FS","OAM10100,OAM10085","OAM10120 FS","OAM10120",191,221,191,224,44,51,44,52,51,,"CCGT D1_Integrated Programme Schedule;CIVILS;CONSTRUCTION;Cooling Water System;Outfall Apron Modification",2,1,0.0000028983,0.0016276704,0.0018311292,1,0.0,0.0004471373,0.0136986301,0.0030769231,0.004375,0.0041775457,0.0057915058,0.0022421525,0.0,0.1499262391
1.4.2.12.3-12,OAM10120,"Outfall Apron Modif - Construct the box culvert to 0.5 m below the shoring",7112,"CCGTD1_IPS",TT_Task,"58726",-,-,-,100,TK_Complete,01/11/2019,24/08/2019,14/11/2019,02/09/2019,"OAM10110 FS,CNY_2018 FS,ICMp2BA8 FS,OAM10115 FS","OAM10110,CNY_2018,ICMp2BA8,OAM10115","OAM10130 FS","OAM10130",222,249,224,250,51,58,52,58,81,,"CCGT D1_Integrated Programme Schedule;CIVILS;CONSTRUCTION;Cooling Water System;Outfall Apron Modification",4,1,0.000007991,0.0014242116,0.0059003052,13,1.0,0.0011513982,0.0273972603,0.0030769231,0.0120625,0.0036553525,0.0186615187,0.0291479821,1.0,0.4384958295
1.4.2.12.3-13,OAM10130,"Outfall Apron Modif - Form the designed opening on apron wing wall (after stop logs installed)",7112,"CCGTD1_IPS",TT_Task,"58726",-,-,-,100,TK_Complete,01/11/2019,06/09/2019,04/11/2019,24/09/2019,"OAM10120 FS","OAM10120","OAM10140 FS","OAM10140",222,251,222,253,51,58,51,59,81,,"CCGT D1_Integrated Programme Schedule;CIVILS;CONSTRUCTION;Cooling Water System;Outfall Apron Modification",1,1,0.0000070387,0.0012207528,0.006103764,3,0.0,0.0010620991,0.0068493151,0.0030769231,0.010625,0.0031331593,0.0193050193,0.0067264574,0.0,0.4019056751
1.4.2.12.3-14,OAM10140,"Outfall Apron Modif - Backfill to 0.5m below the shoring",7112,"CCGTD1_IPS",TT_Task,"58726",-,-,-,100,TK_Complete,02/01/2020,31/10/2019,03/01/2020,01/11/2019,"OAM10130 FS","OAM10130","OAM10150 FS","OAM10150",231,258,231,259,53,60,53,60,87,,"CCGT D1_Integrated Programme Schedule;CIVILS;CONSTRUCTION;Cooling Water System;Outfall Apron Modification",1,1,0.0000060036,0.001017294,0.0063072228,1,1.0,0.0009865675,0.0068493151,0.0030769231,0.0090625,0.0026109661,0.0199485199,0.0022421525,1.0,0.3709567639
1.4.2.12.3-15,OAM10150,"Outfall Apron Modif - Remove the shoring",7112,"CCGTD1_IPS",TT_Task,"58726",-,-,-,100,TK_Complete,04/01/2020,02/11/2019,04/01/2020,04/11/2019,"OAM10140 FS","OAM10140","OAM10160 FS","OAM10160",231,259,231,259,54,60,54,60,87,,"CCGT D1_Integrated Programme Schedule;CIVILS;CONSTRUCTION;Cooling Water System;Outfall Apron Modification",1,1,0.0000048857,0.0008138352,0.0065106816,0,0.6,0.0000812387,0.0068493151,0.0030769231,0.007375,0.0020887728,0.0205920206,0.0,0.6,0.0
1.4.2.12.3-16,OAM10160,"Outfall Apron Modif - Construct the remaining box culvert structure",7112,"CCGTD1_IPS",TT_Task,"58726",-,-,-,100,TK_Complete,05/11/2019,25/09/2019,11/11/2019,30/10/2019,"OAM10150 FS","OAM10150","OAM10170 FF","OAM10170",222,253,223,258,52,59,52,60,81,,"CCGT D1_Integrated Programme Schedule;CIVILS;CONSTRUCTION;Cooling Water System;Outfall Apron Modification",1,1,0.0000036849,0.0006103764,0.0067141404,6,0.0,0.0001503957,0.0068493151,0.0030769231,0.0055625,0.0015665796,0.0212355212,0.0134529148,0.0,0.0283369572
1.4.2.12.3-17,OAM10170,"Outfall Apron Modif - Trim pipe pile",7112,"CCGTD1_IPS",TT_Task,"58726",-,-,-,100,TK_Complete,13/01/2020,02/11/2019,14/01/2020,04/11/2019,"OAM10160 FF","OAM10160","OAM10180 FS","OAM10180",232,259,232,259,54,60,54,60,88,,"CCGT D1_Integrated Programme Schedule;CIVILS;CONSTRUCTION;Cooling Water System;Outfall Apron Modification",1,1,0.0000024014,0.0004069176,0.0069175992,1,1.0,0.000209244,0.0068493151,0.0030769231,0.003625,0.0010443864,0.0218790219,0.0022421525,1.0,0.0524499399
1.4.2.12.3-18,OAM10180,"Outfall Apron Modif - Backfill and reinstate crest wall and rock armour",7112,"CCGTD1_IPS",TT_Task,"58726",-,-,-,100,TK_Complete,15/01/2020,05/11/2019,21/01/2020,09/11/2019,"OAM10170 FS","OAM10170","SW1.1 FF","SW1.1",233,259,233,260,54,60,54,60,88,,"CCGT D1_Integrated Programme Schedule;CIVILS;CONSTRUCTION;Cooling Water System;Outfall Apron Modification",1,1,0.0000010351,0.0002034588,0.007121058,6,1.0,0.0002593786,0.0068493151,0.0030769231,0.0015625,0.0005221932,0.0225225225,0.0134529148,1.0,0.0729924654
1.4.2.12.3-19,OAM10085,"Outfall Apron Modif - BD Consent for Commencement of Excavation & ELS",7112,"CCGTD1_IPS",TT_Task,"58726",-,-,-,100,TK_Complete,27/01/2019,21/12/2018,23/02/2019,01/02/2019,"OAM10080 FS","OAM10080","OAM10110 FS","OAM10110",182,214,186,220,42,49,43,51,46,,"CCGT D1_Integrated Programme Schedule;CIVILS;CONSTRUCTION;Cooling Water System;Outfall Apron Modification",1,1,0.000002153,0.0018311292,0.0012207528,27,0.0,0.0002675675,0.0068493151,0.0030769231,0.00325,0.0046997389,0.0038610039,0.0605381166,0.0,0.0763478693
1.4.2.12.3-20,EV036010,"Event 036 - Dicharge Culvert / Outfall portion amendment (Type II)",7112,"CCGTD1_IPS",TT_Task,"58726",-,-,-,100,TK_Complete,26/11/2018,12/09/2018,25/12/2018,10/10/2018,"","","OAM10080 FS","OAM10080",173,199,177,203,40,46,41,47,39,,"CCGT D1_Integrated Programme Schedule;CIVILS;CONSTRUCTION;Cooling Water System;Outfall Apron Modification",0,1,0.0,0.0026449644,0.0,29,1.0,0.0000812387,0.0,0.0030769231,0.0,0.0067885117,0.0,0.0650224215,1.0,0.0
1.4.2.12.3-21,CNY_2018,"Outfall Apron Modif - Bulkhead Installation",7112,"CCGTD1_IPS",TT_Task,"58726",-,-,-,100,TK_Complete,18/04/2018,22/02/2018,21/04/2018,25/02/2018,"PROMA080 FS","PROMA080","OAM10120 FS","OAM10120",142,170,142,171,33,39,33,39,24,,"CCGT D1_Integrated Programme Schedule;CIVILS;CONSTRUCTION;Cooling Water System;Outfall Apron Modification",1,1,0.0000019046,0.0016276704,0.0012207528,3,1.0,0.0002804149,0.0068493151,0.0030769231,0.002875,0.0041775457,0.0038610039,0.0067264574,1.0,0.0816120461
1.4.2.12.3-22,CNY_2019,"Outfall Apron Modif - Bulkhead Modification (fixing method) - during CNY shutdown",7112,"CCGTD1_IPS",TT_Task,"58726",-,-,-,100,TK_Complete,31/03/2019,08/02/2019,03/04/2019,09/02/2019,"EV056010 FS","EV056010","","",191,221,192,221,44,51,44,51,49,,"CCGT D1_Integrated Programme Schedule;CIVILS;CONSTRUCTION;Cooling Water System;Outfall Apron Modification",1,0,0.0,0.0,0.0002034588,3,1.0,0.0001503957,0.0068493151,0.0,0.0,0.0,0.0006435006,0.0067264574,1.0,0.0283369572
1.4.2.12.3-23,EV056010,"Event 056 - Bulkhead Modification (fixing method) - pre CNY",7112,"CCGTD1_IPS",TT_Task,"58726",-,-,-,100,TK_Complete,26/01/2019,24/01/2019,26/01/2019,30/01/2019,"","","CNY_2019 FS","CNY_2019",182,218,182,219,42,51,42,51,45,,"CCGT D1_Integrated Programme Schedule;CIVILS;CONSTRUCTION;Cooling Water System;Outfall Apron Modification",0,1,0.0,0.0002034588,0.0,0,0.4,0.0000812387,0.0,0.0030769231,0.0,0.0005221932,0.0,0.0,0.4,0.0
1.4.2.12.3-24,EV059010,"Event 059 - Discharge Culvert / Zone C /Plate Load Test",7112,"CCGTD1_IPS",TT_Task,"58726",-,-,-,100,TK_Complete,30/05/2019,02/03/2019,05/06/2019,18/03/2019,"","","OAM10115 FS","OAM10115",200,224,201,226,46,52,46,52,60,,"CCGT D1_Integrated Programme Schedule;CIVILS;CONSTRUCTION;Cooling Water System;Outfall Apron Modification",0,1,0.0,0.0018311292,0.0,6,0.0,0.0000812387,0.0,0.0030769231,0.0,0.0046997389,0.0,0.0134529148,0.0,0.0
1.4.2.12.3-25,OAM10115,"Outfall Apron Modif - Construct the box culvert section in Zone C",7112,"CCGTD1_IPS",TT_Task,"58726",-,-,-,100,TK_Complete,01/06/2019,08/05/2019,29/06/2019,12/08/2019,"EV059010 FS","EV059010","OAM10120 FS","OAM10120",200,233,204,247,46,54,47,57,61,,"CCGT D1_Integrated Programme Schedule;CIVILS;CONSTRUCTION;Cooling Water System;Outfall Apron Modification",1,1,0.0000003312,0.0016276704,0.0002034588,28,0.0,0.0001503957,0.0068493151,0.0030769231,0.0005,0.0041775457,0.0006435006,0.0627802691,0.0,0.0283369572
1.4.2.12.4,58725,"Discharge Box Culvert along Sea Bank Road",7112,"CCGTD1_IPS",WBS,"58715",,,,100,Complete,04/05/2018,25/04/2018,07/02/2020,07/02/2020,,,,,144,179,236,273,33,41,55,63,,,"CCGT D1_Integrated Programme Schedule;CIVILS;CONSTRUCTION;Cooling Water System"
1.4.2.12.4-1,DBC10030,"Discharge Culvert /Zone A (Eastern Section) - all remaining works held up by the issue of 1800 culvert",7112,"CCGTD1_IPS",TT_Task,"58725",-,-,-,100,TK_Complete,31/03/2019,26/01/2019,28/06/2019,10/07/2019,"EV037005 FS,EV037008 FS","EV037005,EV037008","EV055010 FS","EV055010",191,219,204,242,44,51,47,56,49,,"CCGT D1_Integrated Programme Schedule;CIVILS;CONSTRUCTION;Cooling Water System;Discharge Box Culvert along Sea Bank Road",2,1,0.0000004968,0.0012207528,0.0004069176,89,0.0,0.0002195528,0.0136986301,0.0030769231,0.00075,0.0031331593,0.0012870013,0.1995515695,0.0,0.0566739144
1.4.2.12.4-2,EV025900,"Event 025S - Preventive grouting stopped as it's being legalized via AAA amendment",7112,"CCGTD1_IPS",TT_Task,"58725",-,-,-,100,TK_Complete,27/06/2018,22/06/2018,02/08/2018,29/07/2018,"EV021610 FF","EV021610","EV017030 FS","EV017030",152,188,157,193,35,43,36,45,31,,"CCGT D1_Integrated Programme Schedule;CIVILS;CONSTRUCTION;Cooling Water System;Discharge Box Culvert along Sea Bank Road",1,1,0.0,0.016276704,0.0002034588,36,0.8,0.0000953845,0.0068493151,0.0030769231,0.0,0.0417754569,0.0006435006,0.0807174888,0.8,0.0057961958
1.4.2.12.4-3,DBC00010,"Discharge Culvert - Utilities Diversion along Sea Bank Road",7112,"CCGTD1_IPS",TT_Task,"58725",-,-,-,100,TK_Complete,04/05/2018,25/04/2018,25/06/2018,20/06/2018,"","","EV017030 FF","EV017030",144,179,151,187,33,41,35,43,27,,"CCGT D1_Integrated Programme Schedule;CIVILS;CONSTRUCTION;Cooling Water System;Discharge Box Culvert along Sea Bank Road",0,1,0.0,0.016276704,0.0,52,1.0,0.0000812387,0.0,0.0030769231,0.0,0.0417754569,0.0,0.1165919283,1.0,0.0
1.4.2.12.4-4,DBC10010,"Discharge Culvert /Zone A (Eastern Section) - Pipe Pile (PPS080-240, PPS330-490 excl' 1800 culvert)",7112,"CCGTD1_IPS",TT_Task,"58725",-,-,-,100,TK_Complete,05/12/2018,28/08/2018,17/01/2019,12/11/2018,"SFE-BA58 FS,OAM10040 FS,GENSUB61 FS,SFE_BA58 FS,EV017030 FS,SFE_BA58b FS","SFE-BA58,OAM10040,GENSUB61,SFE_BA58,EV017030,SFE_BA58b","DBC10020 FF,DBC20010 FS","DBC10020,DBC20010",175,197,181,208,40,46,42,48,41,,"CCGT D1_Integrated Programme Schedule;CIVILS;CONSTRUCTION;Cooling Water System;Discharge Box Culvert along Sea Bank Road",6,2,0.0000545911,0.0158697864,0.0067141404,43,0.0,0.0008612677,0.0410958904,0.0061538462,0.08240625,0.0407310705,0.0212355212,0.0964125561,0.0,0.3196153933
1.4.2.12.4-5,DBC10060,"Discharge Culvert /Zone A1 (Eastern Section) - Install 1st layer of struts",7112,"CCGTD1_IPS",TT_Task,"58725",-,-,-,100,TK_Complete,05/08/2019,29/05/2019,09/08/2019,01/06/2019,"DBC10050 FS","DBC10050","DBC10070 FS","DBC10070",209,236,210,237,48,55,49,55,69,,"CCGT D1_Integrated Programme Schedule;CIVILS;CONSTRUCTION;Cooling Water System;Discharge Box Culvert along Sea Bank Road",1,1,0.0000008281,0.004069176,0.0002034588,4,1.0,0.0001503957,0.0068493151,0.0030769231,0.00125,0.0104438642,0.0006435006,0.0089686099,1.0,0.0283369572
1.4.2.12.4-6,DBC10050,"Discharge Culvert /Zone A1 (Eastern Section) - Excavate to 0.5m below 1st layer of struts",7112,"CCGTD1_IPS",TT_Task,"58725",-,-,-,100,TK_Complete,01/08/2019,26/05/2019,03/08/2019,28/05/2019,"","","DBC10060 FS","DBC10060",209,236,209,236,48,55,48,55,68,,"CCGT D1_Integrated Programme Schedule;CIVILS;CONSTRUCTION;Cooling Water System;Discharge Box Culvert along Sea Bank Road",0,1,0.0,0.0042726348,0.0,2,1.0,0.0000812387,0.0,0.0030769231,0.0,0.0109660574,0.0,0.0044843049,1.0,0.0
1.4.2.12.4-7,DBC10040,"Discharge Culvert /Zone A1 (Eastern Section) - Pumping Test & Assessment Report to BD",7112,"CCGTD1_IPS",TT_Task,"58725",-,-,-,100,TK_Complete,01/05/2019,01/04/2019,21/05/2019,22/05/2019,"DBC10020 FS,DBC20020 FS,OAM10070 FS","DBC10020,DBC20020,OAM10070","DBC10045 FS,EV055010 FS","DBC10045,EV055010",196,228,198,235,45,53,46,55,56,,"CCGT D1_Integrated Programme Schedule;CIVILS;CONSTRUCTION;Cooling Water System;Discharge Box Culvert along Sea Bank Road",3,2,0.0000315498,0.0052899288,0.008138352,20,0.0,0.0004379126,0.0205479452,0.0061538462,0.047625,0.0135770235,0.0257400257,0.0448430493,0.0,0.146146459
1.4.2.12.4-8,DBC20020,"Discharge Culvert / Grout Curtain (as a temporary cut off from Zone A2)",7112,"CCGTD1_IPS",TT_Task,"58725",-,-,-,100,TK_Complete,07/05/2019,06/03/2019,17/05/2019,19/03/2019,"EV037000 FS","EV037000","DBC10040 FS","DBC10040",196,224,198,226,45,52,46,52,57,,"CCGT D1_Integrated Programme Schedule;CIVILS;CONSTRUCTION;Cooling Water System;Discharge Box Culvert along Sea Bank Road",1,1,0.0000011179,0.0054933876,0.0002034588,10,0.6,0.0001503957,0.0068493151,0.0030769231,0.0016875,0.0140992167,0.0006435006,0.0224215247,0.6,0.0283369572
1.4.2.12.4-9,DBC10020,"Discharge Culvert /Zone  A (Eastern Section) - Grout curtain behind pile wall - excl' 1800 drainage area",7112,"CCGTD1_IPS",TT_Task,"58725",-,-,-,100,TK_Complete,26/11/2018,19/09/2018,08/01/2019,12/01/2019,"DBC10010 FF","DBC10010","DBC10040 FS,DBC20030 FS","DBC10040,DBC20030",173,200,179,217,40,46,41,50,39,,"CCGT D1_Integrated Programme Schedule;CIVILS;CONSTRUCTION;Cooling Water System;Discharge Box Culvert along Sea Bank Road",1,2,0.0000410106,0.0154628688,0.0069175992,43,0.0,0.0004316745,0.0068493151,0.0061538462,0.06190625,0.0396866841,0.0218790219,0.0964125561,0.0,0.1435904021
1.4.2.12.4-10,DBC10080,"Discharge Culvert /Zone A1 (Eastern Section) - Lagging plate below 1st layer of struts to FEL",7112,"CCGTD1_IPS",TT_Task,"58725",-,-,-,100,TK_Complete,01/08/2019,25/06/2019,05/08/2019,04/07/2019,"DBC10070 FS","DBC10070","DBC10090 FS","DBC10090",209,240,209,241,48,56,48,56,68,,"CCGT D1_Integrated Programme Schedule;CIVILS;CONSTRUCTION;Cooling Water System;Discharge Box Culvert along Sea Bank Road",1,1,0.000022855,0.0036622584,0.009155646,4,0.0,0.000488337,0.0068493151,0.0030769231,0.0345,0.0093994778,0.028957529,0.0089686099,0.0,0.1668077322
1.4.2.12.4-11,DBC10070,"Discharge Culvert /Zone A1 (Eastern Section) - Excavate below 1st layer of struts to FEL",7112,"CCGTD1_IPS",TT_Task,"58725",-,-,-,100,TK_Complete,01/08/2019,14/06/2019,10/08/2019,24/06/2019,"DBC10060 FS,DBC10045 FS","DBC10060,DBC10045","DBC10080 FS","DBC10080",209,239,210,240,48,55,49,56,68,,"CCGT D1_Integrated Programme Schedule;CIVILS;CONSTRUCTION;Cooling Water System;Discharge Box Culvert along Sea Bank Road",2,1,0.0000239315,0.0038657172,0.0089521872,9,1.0,0.0004779369,0.0136986301,0.0030769231,0.036125,0.009921671,0.0283140283,0.0201793722,1.0,0.1625463382
1.4.2.12.4-12,DBC10090,"Discharge Culvert /Zone A1 (Eastern Section) - Blinding concrete",7112,"CCGTD1_IPS",TT_Task,"58725",-,-,-,100,TK_Complete,01/08/2019,05/07/2019,06/08/2019,09/07/2019,"DBC10080 FS","DBC10080","DBC10100 FS","DBC10100",209,242,209,242,48,56,48,56,68,,"CCGT D1_Integrated Programme Schedule;CIVILS;CONSTRUCTION;Cooling Water System;Discharge Box Culvert along Sea Bank Road",1,1,0.0000216956,0.0034587996,0.0093591048,5,1.0,0.0004976998,0.0068493151,0.0030769231,0.03275,0.0088772846,0.0296010296,0.0112107623,1.0,0.1706441453
1.4.2.12.4-13,DBC20010,"Discharge Culvert /Zone B(&A3) (Western Section) - Pipe Pile (PPS001-079, PPS491-570) - excl' 1800 drainage area",7112,"CCGTD1_IPS",TT_Task,"58725",-,-,-,100,TK_Complete,18/01/2019,22/10/2018,06/03/2019,29/11/2018,"DBC10010 FS,GENSUB61 FS,SFE_BA58b FS","DBC10010,GENSUB61,SFE_BA58b","DBC20030 FF","DBC20030",181,205,188,210,42,47,43,49,43,,"CCGT D1_Integrated Programme Schedule;CIVILS;CONSTRUCTION;Cooling Water System;Discharge Box Culvert along Sea Bank Road",3,1,0.000061195,0.0128179044,0.0069175992,47,1.0,0.0006467516,0.0205479452,0.0030769231,0.092375,0.0328981723,0.0218790219,0.1053811659,1.0,0.2317178422
1.4.2.12.4-14,DBC20060,"Discharge Culvert /Zone A3 (Western Section) - Install 1st layer of struts",7112,"CCGTD1_IPS",TT_Task,"58725",-,-,-,100,TK_Complete,01/08/2019,22/07/2019,05/08/2019,26/07/2019,"DBC20050 FS","DBC20050","DBC20070 FS,DBC30005 FS","DBC20070,DBC30005",209,244,209,245,48,57,48,57,68,,"CCGT D1_Integrated Programme Schedule;CIVILS;CONSTRUCTION;Cooling Water System;Discharge Box Culvert along Sea Bank Road",1,2,0.0000022358,0.0109867752,0.0002034588,4,1.0,0.0001503957,0.0068493151,0.0061538462,0.003375,0.0281984334,0.0006435006,0.0089686099,1.0,0.0283369572
1.4.2.12.4-15,DBC20050,"Discharge Culvert /Zone A3 (Western Section) - Excavate to 0.5m below 1st layer of struts",7112,"CCGTD1_IPS",TT_Task,"58725",-,-,-,100,TK_Complete,01/08/2019,18/07/2019,03/08/2019,20/07/2019,"","","DBC20060 FS","DBC20060",209,243,209,244,48,56,48,56,68,,"CCGT D1_Integrated Programme Schedule;CIVILS;CONSTRUCTION;Cooling Water System;Discharge Box Culvert along Sea Bank Road",0,1,0.0,0.011190234,0.0,2,1.0,0.0000812387,0.0,0.0030769231,0.0,0.0287206266,0.0,0.0044843049,1.0,0.0
1.4.2.12.4-16,DBC20040,"Discharge Culvert /Zone A3 (Western Section) - Pumping Test & Assessment Report to BD",7112,"CCGTD1_IPS",TT_Task,"58725",-,-,-,100,TK_Complete,01/06/2019,27/05/2019,21/06/2019,12/06/2019,"DBC20030 FS","DBC20030","DBC20045 FS,EV055010 FS,DBC20055 FS","DBC20045,EV055010,DBC20055",200,236,203,238,46,55,47,55,61,,"CCGT D1_Integrated Programme Schedule;CIVILS;CONSTRUCTION;Cooling Water System;Discharge Box Culvert along Sea Bank Road",1,3,0.0000803029,0.0124109868,0.0075279756,20,1.0,0.0008234516,0.0068493151,0.0092307692,0.12121875,0.0318537859,0.0238095238,0.0448430493,1.0,0.3041203093
1.4.2.12.4-17,DBC20030,"Discharge Culvert /Zone B(&A3) (Western Section) - Grout curtain behind pipe pile wall",7112,"CCGTD1_IPS",TT_Task,"58725",-,-,-,100,TK_Complete,26/01/2019,21/11/2018,04/03/2019,10/01/2019,"DBC20010 FF,DBC10020 FS","DBC20010,DBC10020","DBC20040 FS","DBC20040",182,209,187,216,42,48,43,50,45,,"CCGT D1_Integrated Programme Schedule;CIVILS;CONSTRUCTION;Cooling Water System;Discharge Box Culvert along Sea Bank Road",2,1,0.0000792678,0.0126144456,0.0073245168,37,0.0,0.0008709645,0.0136986301,0.0030769231,0.11965625,0.0323759791,0.0231660232,0.0829596413,0.0,0.3235886472
1.4.2.12.4-18,DBC20080,"Discharge Culvert /Zone A3 (Western Section) - Lagging plate below 1st layer of struts to FEL",7112,"CCGTD1_IPS",TT_Task,"58725",-,-,-,100,TK_Complete,09/09/2019,08/08/2019,13/09/2019,12/08/2019,"DBC20070 FS","DBC20070","DBC20090 FS,EV062010 FS","DBC20090,EV062010",214,246,215,247,50,57,50,57,76,,"CCGT D1_Integrated Programme Schedule;CIVILS;CONSTRUCTION;Cooling Water System;Discharge Box Culvert along Sea Bank Road",1,2,0.0000688133,0.0103763988,0.0085452696,4,1.0,0.0004947095,0.0068493151,0.0061538462,0.103875,0.0266318538,0.027027027,0.0089686099,1.0,0.169418884
1.4.2.12.4-19,DBC20070,"Discharge Culvert /Zone A3 (Western Section) -  Excavate below 1st layer of struts to FEL",7112,"CCGTD1_IPS",TT_Task,"58725",-,-,-,100,TK_Complete,01/08/2019,27/07/2019,10/08/2019,06/08/2019,"DBC20060 FS,DBC20045 FS","DBC20060,DBC20045","DBC20080 FS","DBC20080",209,245,210,246,48,57,49,57,68,,"CCGT D1_Integrated Programme Schedule;CIVILS;CONSTRUCTION;Cooling Water System;Discharge Box Culvert along Sea Bank Road",2,1,0.0000683993,0.0105798576,0.0083418108,9,1.0,0.0004834811,0.0136986301,0.0030769231,0.10325,0.027154047,0.0263835264,0.0201793722,1.0,0.1648180612
1.4.2.12.4-20,DBC20090,"Discharge Culvert /Zone A3 (Western Section) - Blinding concrete",7112,"CCGTD1_IPS",TT_Task,"58725",-,-,-,100,TK_Complete,02/01/2020,12/11/2019,07/01/2020,12/11/2019,"DBC20080 FS,SFE10280 FS","DBC20080,SFE10280","DBC20100 FS","DBC20100",231,260,231,260,53,60,54,60,87,,"CCGT D1_Integrated Programme Schedule;CIVILS;CONSTRUCTION;Cooling Water System;Discharge Box Culvert along Sea Bank Road",2,1,0.0000542805,0.0018311292,0.0366225839,5,1.0,0.0003765799,0.0136986301,0.0030769231,0.0819375,0.0046997389,0.1158301158,0.0112107623,1.0,0.1210154722
1.4.2.12.4-21,DBC10100,"Discharge Culvert /Zone A1 (Eastern Section) - Cast base slab and kicker",7112,"CCGTD1_IPS",TT_Task,"58725",-,-,-,100,TK_Complete,01/08/2019,10/07/2019,22/08/2019,17/07/2019,"DBC10090 FS,CWS_2BA8XX FS,DBCp2BA8 FS","DBC10090,CWS_2BA8XX,DBCp2BA8","DBC10120 FS","DBC10120",209,242,212,243,48,56,49,56,68,,"CCGT D1_Integrated Programme Schedule;CIVILS;CONSTRUCTION;Cooling Water System;Discharge Box Culvert along Sea Bank Road",3,1,0.0000293968,0.0032553408,0.012207528,21,1.0,0.0007880357,0.0205479452,0.0030769231,0.044375,0.0083550914,0.0386100386,0.0470852018,1.0,0.2896087071
1.4.2.12.4-22,DBC10110,"Discharge Culvert /Zone A1 (Eastern Section) - Construct manholes",7112,"CCGTD1_IPS",TT_Task,"58725",-,-,-,100,TK_Complete,02/01/2020,26/08/2019,22/01/2020,14/11/2019,"DBC10120 FS,CWSd3BA8 FS","DBC10120,CWSd3BA8","DBC10115 FF","DBC10115",231,249,234,260,53,58,54,60,87,,"CCGT D1_Integrated Programme Schedule;CIVILS;CONSTRUCTION;Cooling Water System;Discharge Box Culvert along Sea Bank Road",2,1,0.0000078253,0.0006103764,0.0138351984,20,0.0,0.0004585479,0.0136986301,0.0030769231,0.0118125,0.0015665796,0.0437580438,0.0448430493,0.0,0.1546017235
1.4.2.12.4-23,DBC10115,"Discharge Culvert /Zone A1 (Eastern Section) - Install drainage pipes",7112,"CCGTD1_IPS",TT_Task,"58725",-,-,-,100,TK_Complete,23/01/2020,26/08/2019,05/02/2020,14/11/2019,"DBC10110 FF","DBC10110","DBC10160 FS","DBC10160",234,249,236,260,54,58,55,60,88,,"CCGT D1_Integrated Programme Schedule;CIVILS;CONSTRUCTION;Cooling Water System;Discharge Box Culvert along Sea Bank Road",1,1,0.0000050927,0.0004069176,0.0140386572,13,0.0,0.0004725579,0.0068493151,0.0030769231,0.0076875,0.0010443864,0.0444015444,0.0291479821,0.0,0.1603423072
1.4.2.12.4-24,DBC10120,"Discharge Culvert /Zone A1 (Eastern Section) - Cast side walls and top slab",7112,"CCGTD1_IPS",TT_Task,"58725",-,-,-,100,TK_Complete,12/08/2019,17/07/2019,02/09/2019,06/08/2019,"DBC10100 FS","DBC10100","DBC10125 FS,DBC20120 FS,DBC10110 FS,CW1.2 FF","DBC10125,DBC20120,DBC10110,CW1.2",210,243,213,246,49,56,49,57,69,,"CCGT D1_Integrated Programme Schedule;CIVILS;CONSTRUCTION;Cooling Water System;Discharge Box Culvert along Sea Bank Road",1,4,0.0000275336,0.003051882,0.0124109868,21,1.0,0.0007546648,0.0068493151,0.0123076923,0.0415625,0.0078328982,0.0392535393,0.0470852018,1.0,0.2759350677
1.4.2.12.4-25,DBC10140,"Discharge Culvert /Zone A1 (Eastern Section) - Remove 1st layer of struts",7112,"CCGTD1_IPS",TT_Task,"58725",-,-,-,100,TK_Complete,06/01/2020,12/08/2019,06/01/2020,12/08/2019,"DBC10125 FS","DBC10125","DBC10150 FS","DBC10150",231,247,231,247,54,57,54,57,87,,"CCGT D1_Integrated Programme Schedule;CIVILS;CONSTRUCTION;Cooling Water System;Discharge Box Culvert along Sea Bank Road",1,1,0.0000026913,0.0006103764,0.0128179044,0,1.0,0.0000812387,0.0068493151,0.0030769231,0.0040625,0.0015665796,0.0405405405,0.0,1.0,0.0
1.4.2.12.4-26,DBC10150,"Discharge Culvert /Zone A1 (Eastern Section) - Trim pipe piles",7112,"CCGTD1_IPS",TT_Task,"58725",-,-,-,100,TK_Complete,07/01/2020,13/08/2019,13/01/2020,20/08/2019,"DBC10140 FS","DBC10140","DBC10160 FS","DBC10160",231,247,232,248,54,57,54,58,87,,"CCGT D1_Integrated Programme Schedule;CIVILS;CONSTRUCTION;Cooling Water System;Discharge Box Culvert along Sea Bank Road",1,1,0.0000001656,0.0004069176,0.0130213632,6,1.0,0.0001503957,0.0068493151,0.0030769231,0.00025,0.0010443864,0.0411840412,0.0134529148,1.0,0.0283369572
1.4.2.12.4-27,DBC10160,"Discharge Culvert /Zone A1 (Eastern Section) - Backfill and reinstate to ground level",7112,"CCGTD1_IPS",TT_Task,"58725",-,-,-,100,TK_Complete,14/01/2020,18/11/2019,20/01/2020,23/11/2019,"DBC10150 FS,DBC10115 FS","DBC10150,DBC10115","SW1.1 FF","SW1.1",232,261,233,262,54,61,54,61,88,,"CCGT D1_Integrated Programme Schedule;CIVILS;CONSTRUCTION;Cooling Water System;Discharge Box Culvert along Sea Bank Road",2,1,0.0000024014,0.0002034588,0.0148524924,6,1.0,0.0006105044,0.0136986301,0.0030769231,0.003625,0.0005221932,0.046975547,0.0134529148,1.0,0.2168656162
1.4.2.12.4-28,DBC20100,"Discharge Culvert /Zone A3 (Western Section) - Cast base slab and kicker",7112,"CCGTD1_IPS",TT_Task,"58725",-,-,-,100,TK_Complete,08/01/2020,13/11/2019,16/01/2020,20/11/2019,"DBC20090 FS","DBC20090","DBC20120 FS","DBC20120",232,260,233,261,54,60,54,61,88,,"CCGT D1_Integrated Programme Schedule;CIVILS;CONSTRUCTION;Cooling Water System;Discharge Box Culvert along Sea Bank Road",1,1,0.0000471591,0.0016276704,0.0368260427,8,1.0,0.000405929,0.0068493151,0.0030769231,0.0711875,0.0041775457,0.1164736165,0.0179372197,1.0,0.1330412184
1.4.2.12.4-29,DBC20110,"Discharge Culvert /Zone A3 (Western Section) - Construct manholes",7112,"CCGTD1_IPS",TT_Task,"58725",-,-,-,100,TK_Complete,02/01/2020,16/12/2019,22/01/2020,24/01/2020,"DBC20120 FS,CWSd3BA8 FS","DBC20120,CWSd3BA8","DBC20115 FF","DBC20115",231,265,234,271,53,61,54,63,87,,"CCGT D1_Integrated Programme Schedule;CIVILS;CONSTRUCTION;Cooling Water System;Discharge Box Culvert along Sea Bank Road",2,1,0.0000170584,0.0004069176,0.0419125127,20,0.0,0.0006421852,0.0136986301,0.0030769231,0.02575,0.0010443864,0.1325611326,0.0448430493,0.0,0.229846747
1.4.2.12.4-30,DBC20115,"Discharge Culvert /Zone A3 (Western Section) - Install drainage pipes",7112,"CCGTD1_IPS",TT_Task,"58725",-,-,-,100,TK_Complete,16/01/2020,16/12/2019,22/01/2020,24/01/2020,"DBC20110 FF","DBC20110","DBC20160 FS","DBC20160",233,265,234,271,54,61,54,63,88,,"CCGT D1_Integrated Programme Schedule;CIVILS;CONSTRUCTION;Cooling Water System;Discharge Box Culvert along Sea Bank Road",1,1,0.0000085706,0.0002034588,0.0421159715,6,0.0,0.0006027812,0.0068493151,0.0030769231,0.0129375,0.0005221932,0.1332046332,0.0134529148,0.0,0.2137010586
1.4.2.12.4-31,DBC20120,"Discharge Culvert /Zone A3 (Western Section) - Cast side walls and top slab",7112,"CCGTD1_IPS",TT_Task,"58725",-,-,-,100,TK_Complete,17/01/2020,21/11/2019,01/02/2020,15/12/2019,"DBC20100 FS,DBC10120 FS","DBC20100,DBC10120","DBC20125 FS,DBC20110 FS,CW1.2 FF","DBC20125,DBC20110,CW1.2",233,261,235,265,54,61,54,61,88,,"CCGT D1_Integrated Programme Schedule;CIVILS;CONSTRUCTION;Cooling Water System;Discharge Box Culvert along Sea Bank Road",2,3,0.0000494363,0.0014242116,0.0404883011,15,0.2,0.0007046122,0.0136986301,0.0092307692,0.074625,0.0036553525,0.1280566281,0.033632287,0.2,0.2554261133
1.4.2.12.4-32,DBC20140,"Discharge Culvert /Zone A3 (Western Section) - Remove 1st layer of struts",7112,"CCGTD1_IPS",TT_Task,"58725",-,-,-,100,TK_Complete,06/01/2020,19/12/2019,06/01/2020,19/12/2019,"DBC20125 FS","DBC20125","DBC20150 FS","DBC20150",231,265,231,265,54,62,54,62,87,,"CCGT D1_Integrated Programme Schedule;CIVILS;CONSTRUCTION;Cooling Water System;Discharge Box Culvert along Sea Bank Road",1,1,0.0000083636,0.0004069176,0.0408952187,0,1.0,0.0000812387,0.0068493151,0.0030769231,0.012625,0.0010443864,0.1293436293,0.0,1.0,0.0
1.4.2.12.4-33,DBC20150,"Discharge Culvert /Zone A3 (Western Section) - Trim pipe piles",7112,"CCGTD1_IPS",TT_Task,"58725",-,-,-,100,TK_Complete,07/01/2020,20/12/2019,13/01/2020,28/12/2019,"DBC20140 FS","DBC20140","DBC20160 FS","DBC20160",231,266,232,267,54,62,54,62,87,,"CCGT D1_Integrated Programme Schedule;CIVILS;CONSTRUCTION;Cooling Water System;Discharge Box Culvert along Sea Bank Road",1,1,0.0000000828,0.0002034588,0.0410986775,6,1.0,0.0001503957,0.0068493151,0.0030769231,0.000125,0.0005221932,0.12998713,0.0134529148,1.0,0.0283369572
1.4.2.12.4-34,DBC20160,"Discharge Culvert /Zone A3 (Western Section) - Backfill and reinstate to ground level",7112,"CCGTD1_IPS",TT_Task,"58725",-,-,-,100,TK_Complete,01/02/2020,01/02/2020,07/02/2020,07/02/2020,"DBC20150 FS,DBC20115 FS","DBC20150,DBC20115","","",235,272,236,273,54,63,55,63,88,,"CCGT D1_Integrated Programme Schedule;CIVILS;CONSTRUCTION;Cooling Water System;Discharge Box Culvert along Sea Bank Road",2,0,0.0,0.0,0.0429298067,6,1.0,0.0007172745,0.0136986301,0.0,0.0,0.0,0.1357786358,0.0134529148,1.0,0.2606144685
1.4.2.12.4-35,DBC10125,"Discharge Culvert /Zone A1 (Eastern Section) - Backfill to 0.5m below 1st layer of struts",7112,"CCGTD1_IPS",TT_Task,"58725",-,-,-,100,TK_Complete,02/01/2020,07/08/2019,04/01/2020,10/08/2019,"DBC10120 FS","DBC10120","DBC10140 FS","DBC10140",231,246,231,247,53,57,54,57,87,,"CCGT D1_Integrated Programme Schedule;CIVILS;CONSTRUCTION;Cooling Water System;Discharge Box Culvert along Sea Bank Road",1,1,0.0000051341,0.0008138352,0.0126144456,2,1.0,0.0001163573,0.0068493151,0.0030769231,0.00775,0.0020887728,0.0398970399,0.0044843049,1.0,0.0143897654
1.4.2.12.4-36,DBC20125,"Discharge Culvert /Zone A3 (Western Section) - Backfill to 0.5m below 1st layer of struts",7112,"CCGTD1_IPS",TT_Task,"58725",-,-,-,100,TK_Complete,02/01/2020,16/12/2019,04/01/2020,18/12/2019,"DBC20120 FS","DBC20120","DBC20140 FS","DBC20140",231,265,231,265,53,61,54,62,87,,"CCGT D1_Integrated Programme Schedule;CIVILS;CONSTRUCTION;Cooling Water System;Discharge Box Culvert along Sea Bank Road",1,1,0.0000165616,0.0006103764,0.0406917599,2,1.0,0.000134721,0.0068493151,0.0030769231,0.025,0.0015665796,0.1287001287,0.0044843049,1.0,0.0219142678
1.4.2.12.4-37,DBC30010,"Discharge Culvert /Zone B (Shaft E Interface Section) - Excavation below 1st layer of strut to FEL",7112,"CCGTD1_IPS",TT_Task,"58725",-,-,-,100,TK_Complete,08/01/2020,22/11/2019,11/01/2020,26/11/2019,"SFE30125 FF,DBC30005 FS","SFE30125,DBC30005","SFE30128 FS,DBC30100 FS","SFE30128,DBC30100",232,262,232,262,54,61,54,61,88,,"CCGT D1_Integrated Programme Schedule;CIVILS;CONSTRUCTION;Cooling Water System;Discharge Box Culvert along Sea Bank Road",2,2,0.0000271403,0.0012207528,0.0386571719,3,1.0,0.0002590448,0.0136986301,0.0061538462,0.04096875,0.0031331593,0.1222651223,0.0067264574,1.0,0.0728557193
1.4.2.12.4-38,DBC30020,"Discharge Culvert /Shaft E Interface - Install CW pipe between Shaft E and Discharge Culvert",7112,"CCGTD1_IPS",TT_Task,"58725",-,-,-,100,TK_Complete,03/01/2020,06/12/2019,11/01/2020,15/12/2019,"DBC30100 FF","DBC30100","CW1.2 FF","CW1.2",231,264,232,265,53,61,54,61,87,,"CCGT D1_Integrated Programme Schedule;CIVILS;CONSTRUCTION;Cooling Water System;Discharge Box Culvert along Sea Bank Road",1,1,0.0000000207,0.0002034588,0.0390640895,8,1.0,0.000131705,0.0068493151,0.0030769231,0.00003125,0.0005221932,0.1235521236,0.0179372197,1.0,0.0206784674
1.4.2.12.4-39,DBC30030,"Discharge Culvert /Zone B (Shaft E Interface Section) - Remaining drainage works and backfill",7112,"CCGTD1_IPS",TT_Task,"58725",-,-,-,100,TK_Complete,01/01/2020,19/12/2019,30/01/2020,24/01/2020,"SFE30128 FS,DBC30100 FS,CWSd3BA8 FS","SFE30128,DBC30100,CWSd3BA8","","",231,265,235,271,53,62,54,63,86,,"CCGT D1_Integrated Programme Schedule;CIVILS;CONSTRUCTION;Cooling Water System;Discharge Box Culvert along Sea Bank Road",3,0,0.0,0.0,0.0406917599,29,0.8,0.0004043602,0.0205479452,0.0,0.0,0.0,0.1287001287,0.0650224215,0.8,0.1323984159
1.4.2.12.4-40,DBC20045,"Discharge Culvert /Zone A3 (Western Section) - BD Consent for Commencement of Excavation & ELS",7112,"CCGTD1_IPS",TT_Task,"58725",-,-,-,100,TK_Complete,01/08/2019,06/06/2019,28/08/2019,03/07/2019,"DBC20040 FS","DBC20040","DBC20070 FS","DBC20070",209,237,213,241,48,55,49,56,68,,"CCGT D1_Integrated Programme Schedule;CIVILS;CONSTRUCTION;Cooling Water System;Discharge Box Culvert along Sea Bank Road",1,1,0.0000640932,0.0107833164,0.0077314344,27,1.0,0.0003819022,0.0068493151,0.0030769231,0.09675,0.0276762402,0.0244530245,0.0605381166,1.0,0.1231963053
1.4.2.12.4-41,DBC10045,"Discharge Culvert /Zone A1 (Eastern Section) - BD Consent for Commencement of Excavation & ELS",7112,"CCGTD1_IPS",TT_Task,"58725",-,-,-,100,TK_Complete,09/06/2019,16/05/2019,06/07/2019,12/06/2019,"DBC10040 FS","DBC10040","DBC10070 FS","DBC10070",201,234,205,238,47,54,47,55,62,,"CCGT D1_Integrated Programme Schedule;CIVILS;CONSTRUCTION;Cooling Water System;Discharge Box Culvert along Sea Bank Road",1,1,0.000023269,0.004069176,0.0083418108,27,1.0,0.0003154291,0.0068493151,0.0030769231,0.035125,0.0104438642,0.0263835264,0.0605381166,1.0,0.0959590689
1.4.2.12.4-42,EV017030,"Event 017S - Sea Bank Road (Zone A and Zone B excl' 1800 culvert) - Advanced Precautionary Grouting",7112,"CCGTD1_IPS",TT_Task,"58725",-,-,-,100,TK_Complete,02/06/2018,25/05/2018,31/07/2018,30/08/2018,"DBC00010 FF,EV021610 FS,EV025900 FS","DBC00010,EV021610,EV025900","DBC10010 FS","DBC10010",148,184,156,197,34,42,36,46,29,,"CCGT D1_Integrated Programme Schedule;CIVILS;CONSTRUCTION;Cooling Water System;Discharge Box Culvert along Sea Bank Road",3,1,0.0000098127,0.0160732452,0.0006103764,59,0.0,0.0002547732,0.0205479452,0.0030769231,0.0148125,0.0412532637,0.0019305019,0.1322869955,0.0,0.0711054363
1.4.2.12.4-43,EV017040,"Event 017S - Sea Bank Road (Zone C) - Advanced Precautionary Grouting inside creast wall",7112,"CCGTD1_IPS",TT_Task,"58725",-,-,-,100,TK_Complete,26/11/2018,04/09/2018,30/11/2018,08/09/2018,"","","","",173,198,174,199,40,46,40,46,39,,"CCGT D1_Integrated Programme Schedule;CIVILS;CONSTRUCTION;Cooling Water System;Discharge Box Culvert along Sea Bank Road",0,0,0.0,0.0,0.0,4,1.0,0.0000812387,0.0,0.0,0.0,0.0,0.0,0.0089686099,1.0,0.0
1.4.2.12.4-44,EV017050,"Event 017S - Sea Bank Road (Zone C) - Advanced Precautionary Grouting outside creast wall",7112,"CCGTD1_IPS",TT_Task,"58725",-,-,-,100,TK_Complete,26/11/2018,16/10/2018,30/11/2018,20/10/2018,"OAM10020 FS","OAM10020","OAM10030 FS","OAM10030",173,204,174,205,40,47,40,47,39,,"CCGT D1_Integrated Programme Schedule;CIVILS;CONSTRUCTION;Cooling Water System;Discharge Box Culvert along Sea Bank Road",1,1,0.0000010765,0.0002034588,0.0052899288,4,1.0,0.0003254401,0.0068493151,0.0030769231,0.001625,0.0005221932,0.0167310167,0.0089686099,1.0,0.1000610659
1.4.2.12.4-45,EV037000,"Event 037a - Discharge Culvert / Zone A & B amendment (Type II)",7112,"CCGTD1_IPS",TT_Task,"58725",-,-,-,100,TK_Complete,26/01/2019,02/01/2019,24/02/2019,31/01/2019,"","","DBC20020 FS","DBC20020",182,215,186,219,42,50,43,51,45,,"CCGT D1_Integrated Programme Schedule;CIVILS;CONSTRUCTION;Cooling Water System;Discharge Box Culvert along Sea Bank Road",0,1,0.0,0.0056968464,0.0,29,1.0,0.0000812387,0.0,0.0030769231,0.0,0.0146214099,0.0,0.0650224215,1.0,0.0
1.4.2.12.4-46,EV037005,"Event 037b - Discharge Culvert / 1800 drainage amendment (Type II)",7112,"CCGTD1_IPS",TT_Task,"58725",-,-,-,100,TK_Complete,26/01/2019,02/01/2019,24/02/2019,31/01/2019,"","","DBC10030 FS","DBC10030",182,215,186,219,42,50,43,51,45,,"CCGT D1_Integrated Programme Schedule;CIVILS;CONSTRUCTION;Cooling Water System;Discharge Box Culvert along Sea Bank Road",0,1,0.0,0.0014242116,0.0,29,1.0,0.0000812387,0.0,0.0030769231,0.0,0.0036553525,0.0,0.0650224215,1.0,0.0
1.4.2.12.4-47,EV055010,"Event 055 - 1800 drainage pipe at SBR / Pumping test and assessment report to BD (Zone A2)",7112,"CCGTD1_IPS",TT_Task,"58725",-,-,-,100,TK_Complete,01/08/2019,17/07/2019,17/08/2019,26/07/2019,"DBC10040 FS,DBC20040 FS,DBC10030 FS","DBC10040,DBC20040,DBC10030","EV055020 FS","EV055020",209,243,211,245,48,56,49,57,68,,"CCGT D1_Integrated Programme Schedule;CIVILS;CONSTRUCTION;Cooling Water System;Discharge Box Culvert along Sea Bank Road",3,1,0.0000095643,0.001017294,0.0095625636,16,1.0,0.0005850428,0.0205479452,0.0030769231,0.0144375,0.0026109661,0.0302445302,0.0358744395,1.0,0.2064327741
1.4.2.12.4-48,EV055020,"Event 055 - 1800 drainage pipe at SBR / Excavation consent (Zone A2)",7112,"CCGTD1_IPS",TT_Task,"58725",-,-,-,100,TK_Complete,11/08/2019,31/07/2019,07/09/2019,28/08/2019,"EV055010 FS","EV055010","EV055030 FS,EV044020 FS","EV055030,EV044020",210,245,214,249,49,57,50,58,69,,"CCGT D1_Integrated Programme Schedule;CIVILS;CONSTRUCTION;Cooling Water System;Discharge Box Culvert along Sea Bank Road",1,2,0.0000077839,0.0008138352,0.0097660224,27,0.8,0.0005796275,0.0068493151,0.0061538462,0.01175,0.0020887728,0.0308880309,0.0605381166,0.8,0.2042138537
1.4.2.12.4-49,EV055030,"Event 055 - 1800 drainage pipe at SBR / Excavation and construction of Discharge Culvert (Zone A2)",7112,"CCGTD1_IPS",TT_Task,"58725",-,-,-,100,TK_Complete,01/11/2019,07/09/2019,27/01/2020,25/11/2019,"EV055020 FS,EV044020 FS","EV055020,EV044020","DBC40100 SS,DBC40100 FF,DBC40010 FS,CW1.2 FF","DBC40100,DBC40100,DBC40010,CW1.2",222,251,234,262,51,58,54,61,81,,"CCGT D1_Integrated Programme Schedule;CIVILS;CONSTRUCTION;Cooling Water System;Discharge Box Culvert along Sea Bank Road",2,2,0.0000039748,0.0004069176,0.01017294,87,1.0,0.0006414991,0.0136986301,0.0061538462,0.006,0.0010443864,0.0321750322,0.1950672646,1.0,0.229565641
1.4.2.12.4-50,EV037008,"Event 037d - Discharge Culvert / 1800 drainage & TBM alignment (Type II)",7112,"CCGTD1_IPS",TT_Task,"58725",-,-,-,100,TK_Complete,31/03/2019,26/03/2019,29/04/2019,30/04/2019,"","","DBC10030 FS","DBC10030",191,227,195,232,44,53,45,54,49,,"CCGT D1_Integrated Programme Schedule;CIVILS;CONSTRUCTION;Cooling Water System;Discharge Box Culvert along Sea Bank Road",0,1,0.0,0.0014242116,0.0,29,0.8,0.0000812387,0.0,0.0030769231,0.0,0.0036553525,0.0,0.0650224215,0.8,0.0
1.4.2.12.4-51,DBC20055,"Discharge Culvert /Zone B (Shaft E Interface Section) - Pumping Test & Assessment Report to BD",7112,"CCGTD1_IPS",TT_Task,"58725",-,-,-,100,TK_Complete,01/08/2019,11/06/2019,21/08/2019,26/06/2019,"DBC20040 FS","DBC20040","DBC20065 FS,DBC30005 FS","DBC20065,DBC30005",209,238,212,240,48,55,49,56,68,,"CCGT D1_Integrated Programme Schedule;CIVILS;CONSTRUCTION;Cooling Water System;Discharge Box Culvert along Sea Bank Road",1,2,0.0000124833,0.0018311292,0.0077314344,20,1.0,0.0003039524,0.0068493151,0.0061538462,0.01884375,0.0046997389,0.0244530245,0.0448430493,1.0,0.0912565225
1.4.2.12.4-52,DBC20065,"Discharge Culvert /Zone B (Shaft E Interface Section) - BD Consent for Commencement of Excavation & ELS",7112,"CCGTD1_IPS",TT_Task,"58725",-,-,-,100,TK_Complete,01/01/2020,15/11/2019,28/01/2020,12/12/2019,"DBC20055 FS,SFE30125 FF","DBC20055,SFE30125","","",231,261,234,264,53,60,54,61,86,,"CCGT D1_Integrated Programme Schedule;CIVILS;CONSTRUCTION;Cooling Water System;Discharge Box Culvert along Sea Bank Road",2,0,0.0,0.0,0.0384537131,27,1.0,0.0005155922,0.0136986301,0.0,0.0,0.0,0.1216216216,0.0605381166,1.0,0.1779755149
1.4.2.12.4-53,DBC30100,"Discharge Culvert /Zone B (Shaft E Interface Section) - RC works",7112,"CCGTD1_IPS",TT_Task,"58725",-,-,-,100,TK_Complete,12/01/2020,27/11/2019,26/01/2020,15/12/2019,"DBC30010 FS","DBC30010","DBC30020 FF,DBC30030 FS,DBC30110 FS","DBC30020,DBC30030,DBC30110",232,262,234,265,54,61,54,61,88,,"CCGT D1_Integrated Programme Schedule;CIVILS;CONSTRUCTION;Cooling Water System;Discharge Box Culvert along Sea Bank Road",1,3,0.0000166651,0.0008138352,0.0388606307,14,0.6,0.0002879071,0.0068493151,0.0092307692,0.02515625,0.0020887728,0.1229086229,0.0313901345,0.6,0.084681985
1.4.2.12.4-54,DBC30005,"Discharge Culvert /Zone B (Shaft E Interface Section) - 1st layer excavation and ELS",7112,"CCGTD1_IPS",TT_Task,"58725",-,-,-,100,TK_Complete,01/01/2020,18/11/2019,07/01/2020,21/11/2019,"DBC20055 FS,DBC20060 FS","DBC20055,DBC20060","DBC30010 FS","DBC30010",231,261,231,261,53,61,54,61,86,,"CCGT D1_Integrated Programme Schedule;CIVILS;CONSTRUCTION;Cooling Water System;Discharge Box Culvert along Sea Bank Road",2,1,0.0000102061,0.0014242116,0.0083418108,6,1.0,0.000179531,0.0136986301,0.0030769231,0.01540625,0.0036553525,0.0263835264,0.0134529148,1.0,0.0402750645
1.4.2.12.4-55,DBC40010,"Discharge Culvert /Zone A2 (1800 Drainage Section) - Remaining drainage works and backfill",7112,"CCGTD1_IPS",TT_Task,"58725",-,-,-,100,TK_Complete,01/01/2020,26/11/2019,30/01/2020,24/01/2020,"EV055030 FS,CWSd3BA8 FS","EV055030,CWSd3BA8","","",231,262,235,271,53,61,54,63,86,,"CCGT D1_Integrated Programme Schedule;CIVILS;CONSTRUCTION;Cooling Water System;Discharge Box Culvert along Sea Bank Road",2,0,0.0,0.0,0.0120040692,29,0.0,0.0006698132,0.0136986301,0.0,0.0,0.0,0.037966538,0.0650224215,0.0,0.2411672781
1.4.2.12.4-56,EV062010,"Event 062 - Construct temporary mucking pit at SBR Zone A3",7112,"CCGTD1_IPS",TT_Task,"58725",-,-,-,100,TK_Complete,14/09/2019,13/08/2019,18/09/2019,17/08/2019,"DBC20080 FS","DBC20080","SFE10278 FS","SFE10278",215,247,216,248,50,57,50,57,76,,"CCGT D1_Integrated Programme Schedule;CIVILS;CONSTRUCTION;Cooling Water System;Discharge Box Culvert along Sea Bank Road",1,1,0.0000557711,0.01017294,0.0087487284,4,1.0,0.000271407,0.0068493151,0.0030769231,0.0841875,0.0261096606,0.0276705277,0.0089686099,1.0,0.077921073
1.4.2.12.4-57,EV044020,"Event 044 - Set up and conduct plate load test PL4 at SBR Zone A3",7112,"CCGTD1_IPS",TT_Task,"58725",-,-,-,100,TK_Complete,01/11/2019,06/09/2019,06/11/2019,09/09/2019,"EV055020 FS","EV055020","EV055030 FS","EV055030",222,251,223,251,51,58,52,58,81,,"CCGT D1_Integrated Programme Schedule;CIVILS;CONSTRUCTION;Cooling Water System;Discharge Box Culvert along Sea Bank Road",1,1,0.0,0.0006103764,0.0099694812,5,1.0,0.000108133,0.0068493151,0.0030769231,0.0,0.0015665796,0.0315315315,0.0112107623,1.0,0.0110198795
1.4.2.12.4-58,DBC30110,"Discharge Culvert /Zone B (Shaft E Interface Section) - Strip internal space",7112,"CCGTD1_IPS",TT_Task,"58725",-,-,-,100,TK_Complete,12/01/2020,17/12/2019,14/01/2020,18/12/2019,"DBC30100 FS","DBC30100","CW1.2 FF","CW1.2",232,265,232,265,54,61,54,62,88,,"CCGT D1_Integrated Programme Schedule;CIVILS;CONSTRUCTION;Cooling Water System;Discharge Box Culvert along Sea Bank Road",1,1,0.0000000207,0.0002034588,0.0390640895,2,1.0,0.0000938553,0.0068493151,0.0030769231,0.00003125,0.0005221932,0.1235521236,0.0044843049,1.0,0.0051696168
1.4.2.12.5,58724,"Shaft E",7112,"CCGTD1_IPS",WBS,"58715",,,,100,Complete,23/10/2017,08/09/2017,13/01/2020,10/01/2020,,,,,116,147,232,269,27,34,54,62,,,"CCGT D1_Integrated Programme Schedule;CIVILS;CONSTRUCTION;Cooling Water System"
1.4.2.12.5-1,EV021620,"Event 021E - Consent for pipe piles (incl' APG) and grout curtain further to AAA amendment",7112,"CCGTD1_IPS",TT_Task,"58724",-,-,-,100,TK_Complete,26/08/2018,27/07/2018,05/09/2018,06/08/2018,"EV021610 FS","EV021610","SFE10030 FS","SFE10030",160,193,162,194,37,45,37,45,35,,"CCGT D1_Integrated Programme Schedule;CIVILS;CONSTRUCTION;Cooling Water System;Shaft E",1,1,0.0,0.0154628688,0.0002034588,10,1.0,0.0000851681,0.0068493151,0.0030769231,0.0,0.0396866841,0.0006435006,0.0224215247,1.0,0.0016100544
1.4.2.12.5-2,EV034010,"Event 034 - ROI #113 Crest Wall Removal / date of issuance",7112,"CCGTD1_IPS",TT_FinMile,"58724",-,-,-,100,TK_Complete,16/07/2018,16/07/2018,16/07/2018,16/07/2018,"","","EV034020 FS","EV034020",154,191,154,191,36,44,36,44,32,,"CCGT D1_Integrated Programme Schedule;CIVILS;CONSTRUCTION;Cooling Water System;Shaft E",0,1,0.0,0.0168870804,0.0,0,1.0,0.0000812387,0.0,0.0030769231,0.0,0.0433420366,0.0,0.0,1.0,0.0
1.4.2.12.5-3,EV034020,"Event 034 - ROI #113 Crest Wall Removal / method statement, mobilize subcon, etc",7112,"CCGTD1_IPS",TT_Task,"58724",-,-,-,100,TK_Complete,26/07/2018,17/07/2018,24/08/2018,14/08/2018,"EV034010 FS","EV034010","EV034030 FS","EV034030",156,191,160,195,36,44,37,45,33,,"CCGT D1_Integrated Programme Schedule;CIVILS;CONSTRUCTION;Cooling Water System;Shaft E",1,1,0.0000033951,0.0166836216,0.0002034588,29,1.0,0.0001503957,0.0068493151,0.0030769231,0.005125,0.0428198433,0.0006435006,0.0650224215,1.0,0.0283369572
1.4.2.12.5-4,EV034030,"Event 034 - ROI #113 Crest Wall Removal / site works",7112,"CCGTD1_IPS",TT_Task,"58724",-,-,-,100,TK_Complete,15/09/2018,15/08/2018,05/10/2018,10/09/2018,"EV034020 FS","EV034020","EV011210 FS","EV011210",163,195,166,199,38,45,38,46,36,,"CCGT D1_Integrated Programme Schedule;CIVILS;CONSTRUCTION;Cooling Water System;Shaft E",1,1,0.0000067074,0.0164801628,0.0004069176,20,0.4,0.000209244,0.0068493151,0.0030769231,0.010125,0.0422976501,0.0012870013,0.0448430493,0.4,0.0524499399
1.4.2.12.5-5,EV011225,"Event 011E - Curing and cube test to backfill grout",7112,"CCGTD1_IPS",TT_Task,"58724",-,-,-,100,TK_Complete,06/12/2018,21/09/2018,02/01/2019,18/10/2018,"EV011210 FS","EV011210","EV011230 FS","EV011230",175,201,179,204,40,46,41,47,42,,"CCGT D1_Integrated Programme Schedule;CIVILS;CONSTRUCTION;Cooling Water System;Shaft E",1,1,0.0000040369,0.0140386572,0.0014242116,27,1.0,0.0001575761,0.0068493151,0.0030769231,0.00609375,0.0360313316,0.0045045045,0.0605381166,1.0,0.0312791074
1.4.2.12.5-6,EV017020,"Event 017E - Shaft E - Preventive Grouting",7112,"CCGTD1_IPS",TT_Task,"58724",-,-,-,100,TK_Complete,06/06/2018,10/05/2018,05/07/2018,25/05/2018,"SFE00010 FS","SFE00010","SFE10030 FS","SFE10030",149,181,153,184,34,42,35,42,30,,"CCGT D1_Integrated Programme Schedule;CIVILS;CONSTRUCTION;Cooling Water System;Shaft E",1,1,0.0,0.0154628688,0.0038657172,29,1.0,0.0001183603,0.0068493151,0.0030769231,0.0,0.0396866841,0.0122265122,0.0650224215,1.0,0.0152104826
1.4.2.12.5-7,SFE00010,"Shaft E - Utilities Diversion",7112,"CCGTD1_IPS",TT_Task,"58724",-,-,-,100,TK_Complete,04/05/2018,19/03/2018,25/06/2018,30/05/2018,"SFE10025 FS","SFE10025","SFE10030 FS,EV017020 FS","SFE10030,EV017020",144,174,151,184,33,40,35,43,27,,"CCGT D1_Integrated Programme Schedule;CIVILS;CONSTRUCTION;Cooling Water System;Shaft E",1,2,0.0000221925,0.0156663276,0.0036622584,52,0.0,0.0001503957,0.0068493151,0.0061538462,0.0335,0.0402088773,0.0115830116,0.1165919283,0.0,0.0283369572
1.4.2.12.5-8,SFE10045,"Shaft E - Pumping Test and Report Submission",7112,"CCGTD1_IPS",TT_Task,"58724",-,-,-,100,TK_Complete,26/12/2018,15/12/2018,15/01/2019,28/01/2019,"SFE10035 FS","SFE10035","SFE10046 FF","SFE10046",178,213,180,219,41,49,42,51,42,,"CCGT D1_Integrated Programme Schedule;CIVILS;CONSTRUCTION;Cooling Water System;Shaft E",1,1,0.0000014491,0.0144455748,0.0063072228,20,0.0,0.0001798087,0.0068493151,0.0030769231,0.0021875,0.037075718,0.0199485199,0.0448430493,0.0,0.0403888694
1.4.2.12.5-9,SFE10060,"Shaft E - Install 1st layer of struts (22 t)",7112,"CCGTD1_IPS",TT_Task,"58724",-,-,-,100,TK_Complete,20/02/2019,20/01/2019,23/02/2019,23/01/2019,"SFE10050 FS","SFE10050","SFE10070 FS","SFE10070",186,218,186,218,43,50,43,51,47,,"CCGT D1_Integrated Programme Schedule;CIVILS;CONSTRUCTION;Cooling Water System;Shaft E",1,1,0.0000028983,0.014242116,0.0002034588,3,1.0,0.0001503957,0.0068493151,0.0030769231,0.004375,0.0365535248,0.0006435006,0.0067264574,1.0,0.0283369572
1.4.2.12.5-10,SFE10050,"Shaft E - Excavate to 0.5m below 1st layer of struts / Install lagging plate",7112,"CCGTD1_IPS",TT_Task,"58724",-,-,-,100,TK_Complete,13/02/2019,15/01/2019,19/02/2019,19/01/2019,"","","SFE10060 FS","SFE10060",185,217,185,218,43,50,43,50,47,,"CCGT D1_Integrated Programme Schedule;CIVILS;CONSTRUCTION;Cooling Water System;Shaft E",0,1,0.0,0.0144455748,0.0,6,1.0,0.0000812387,0.0,0.0030769231,0.0,0.037075718,0.0,0.0134529148,1.0,0.0
1.4.2.12.5-11,SFE10080,"Shaft E - Intstall lagging plates and 2nd layer of strut",7112,"CCGTD1_IPS",TT_Task,"58724",-,-,-,100,TK_Complete,02/04/2019,02/03/2019,06/04/2019,08/03/2019,"SFE10070 FF","SFE10070","SFE10090 FS","SFE10090",191,224,192,225,44,52,44,52,52,,"CCGT D1_Integrated Programme Schedule;CIVILS;CONSTRUCTION;Cooling Water System;Shaft E",1,1,0.0000194598,0.0138351984,0.0075279756,4,0.6,0.0006879277,0.0068493151,0.0030769231,0.029375,0.0355091384,0.0238095238,0.0089686099,0.6,0.2485896787
1.4.2.12.5-12,SFE10070,"Shaft E - Excavate to below 2nd layer of strut",7112,"CCGTD1_IPS",TT_Task,"58724",-,-,-,100,TK_Complete,01/04/2019,01/03/2019,05/04/2019,05/03/2019,"SFE10060 FS,SFE10046 FS,SFE10046 FF,SFE10032 FS","SFE10060,SFE10046,SFE10046,SFE10032","SFE10080 FF","SFE10080",191,224,192,224,44,52,44,52,51,,"CCGT D1_Integrated Programme Schedule;CIVILS;CONSTRUCTION;Cooling Water System;Shaft E",3,1,0.0000181349,0.0140386572,0.0073245168,4,1.0,0.0007122299,0.0205479452,0.0030769231,0.027375,0.0360313316,0.0231660232,0.0089686099,1.0,0.2585474221
1.4.2.12.5-13,SFE10250,"Shaft E - Excavate to final excavation level -18 mPD /install lagging plate/ S9 at FEL",7112,"CCGTD1_IPS",TT_Task,"58724",-,-,-,100,TK_Complete,01/06/2019,06/05/2019,12/06/2019,22/05/2019,"SFE10200 FS","SFE10200","SFE10260 FF,EV060010 SS","SFE10260,EV060010",200,233,202,235,46,54,47,55,61,,"CCGT D1_Integrated Programme Schedule;CIVILS;CONSTRUCTION;Cooling Water System;Shaft E",1,2,0.0000838429,0.011190234,0.011190234,11,0.2,0.000528135,0.0068493151,0.0061538462,0.1265625,0.0287206266,0.0353925354,0.0246636771,0.2,0.1831149106
1.4.2.12.5-14,SFE10100,"Shaft E -  Intstall lagging plates and 3rd layer of strut",7112,"CCGTD1_IPS",TT_Task,"58724",-,-,-,100,TK_Complete,02/04/2019,11/03/2019,06/04/2019,15/03/2019,"SFE10090 FF","SFE10090","SFE10110 FS","SFE10110",191,225,192,226,44,52,44,52,52,,"CCGT D1_Integrated Programme Schedule;CIVILS;CONSTRUCTION;Cooling Water System;Shaft E",1,1,0.0000218613,0.0134282808,0.0079348932,4,1.0,0.0006530676,0.0068493151,0.0030769231,0.033,0.034464752,0.0250965251,0.0089686099,1.0,0.234305789
1.4.2.12.5-15,SFE10110,"Shaft E - Excavate to below 4th layer of strut",7112,"CCGTD1_IPS",TT_Task,"58724",-,-,-,100,TK_Complete,01/04/2019,16/03/2019,05/04/2019,17/03/2019,"SFE10100 FS,SFE10029 FS,EV011240 FS","SFE10100,SFE10029,EV011240","SFE10120 FF","SFE10120",191,226,192,226,44,52,44,52,51,,"CCGT D1_Integrated Programme Schedule;CIVILS;CONSTRUCTION;Cooling Water System;Shaft E",3,1,0.0000797025,0.013224822,0.009155646,4,1.0,0.0010804787,0.0205479452,0.0030769231,0.1203125,0.0339425587,0.028957529,0.0089686099,1.0,0.4094366957
1.4.2.12.5-16,SFE10120,"Shaft E -  Intstall lagging plates and 4th layer of strut",7112,"CCGTD1_IPS",TT_Task,"58724",-,-,-,100,TK_Complete,02/04/2019,17/03/2019,06/04/2019,26/03/2019,"SFE10110 FF","SFE10110","SFE10130 FS","SFE10130",191,226,192,227,44,52,44,53,52,,"CCGT D1_Integrated Programme Schedule;CIVILS;CONSTRUCTION;Cooling Water System;Shaft E",1,1,0.0000804892,0.0130213632,0.0093591048,4,0.4,0.0010146856,0.0068493151,0.0030769231,0.1215,0.0334203655,0.0296010296,0.0089686099,0.4,0.3824780837
1.4.2.12.5-17,SFE10130,"Shaft E - Excavate to below 5th layer of strut",7112,"CCGTD1_IPS",TT_Task,"58724",-,-,-,100,TK_Complete,01/04/2019,27/03/2019,05/04/2019,28/03/2019,"SFE10120 FS","SFE10120","SFE10140 FF","SFE10140",191,227,192,227,44,53,44,53,51,,"CCGT D1_Integrated Programme Schedule;CIVILS;CONSTRUCTION;Cooling Water System;Shaft E",1,1,0.0000811931,0.0128179044,0.0095625636,4,1.0,0.0009481745,0.0068493151,0.0030769231,0.1225625,0.0328981723,0.0302445302,0.0089686099,1.0,0.3552252957
1.4.2.12.5-18,SFE10140,"Shaft E -  Intstall lagging plates and 5th layer of strut",7112,"CCGTD1_IPS",TT_Task,"58724",-,-,-,100,TK_Complete,01/04/2019,28/03/2019,05/04/2019,02/04/2019,"SFE10130 FF","SFE10130","SFE10150 FS","SFE10150",191,227,192,228,44,53,44,53,51,,"CCGT D1_Integrated Programme Schedule;CIVILS;CONSTRUCTION;Cooling Water System;Shaft E",1,1,0.0000818141,0.0126144456,0.0097660224,4,0.8,0.0008927348,0.0068493151,0.0030769231,0.1235,0.0323759791,0.0308880309,0.0089686099,0.8,0.332508987
1.4.2.12.5-19,SFE10090,"Shaft E - Excavate to below 3rd layer of strut",7112,"CCGTD1_IPS",TT_Task,"58724",-,-,-,100,TK_Complete,01/04/2019,09/03/2019,05/04/2019,10/03/2019,"SFE10080 FS","SFE10080","SFE10100 FF","SFE10100",191,225,192,225,44,52,44,52,51,,"CCGT D1_Integrated Programme Schedule;CIVILS;CONSTRUCTION;Cooling Water System;Shaft E",1,1,0.000020702,0.0136317396,0.0077314344,4,1.0,0.0006675779,0.0068493151,0.0030769231,0.03125,0.0349869452,0.0244530245,0.0089686099,1.0,0.2402513636
1.4.2.12.5-20,SFE10150,"Shaft E - Excavate to below 6th layer of strut",7112,"CCGTD1_IPS",TT_Task,"58724",-,-,-,100,TK_Complete,01/05/2019,03/04/2019,06/05/2019,05/04/2019,"SFE10140 FS","SFE10140","SFE10160 FF","SFE10160",196,228,196,229,45,53,45,53,56,,"CCGT D1_Integrated Programme Schedule;CIVILS;CONSTRUCTION;Cooling Water System;Shaft E",1,1,0.0000823524,0.0124109868,0.0099694812,5,1.0,0.0008516194,0.0068493151,0.0030769231,0.1243125,0.0318537859,0.0315315315,0.0112107623,1.0,0.3156620058
1.4.2.12.5-21,SFE10160,"Shaft E -  Intstall lagging plates and 6th layer of strut",7112,"CCGTD1_IPS",TT_Task,"58724",-,-,-,100,TK_Complete,02/05/2019,06/04/2019,07/05/2019,09/04/2019,"SFE10150 FF","SFE10150","SFE10170 FS","SFE10170",196,229,196,229,45,53,45,53,57,,"CCGT D1_Integrated Programme Schedule;CIVILS;CONSTRUCTION;Cooling Water System;Shaft E",1,1,0.0000828078,0.012207528,0.01017294,5,1.0,0.0007883283,0.0068493151,0.0030769231,0.125,0.0313315927,0.0321750322,0.0112107623,1.0,0.28972862
1.4.2.12.5-22,SFE10170,"Shaft E - Excavate to below 7th layer of strut",7112,"CCGTD1_IPS",TT_Task,"58724",-,-,-,100,TK_Complete,08/05/2019,11/04/2019,13/05/2019,13/04/2019,"SFE10160 FS","SFE10160","SFE10180 FF","SFE10180",197,229,197,230,45,53,46,53,58,,"CCGT D1_Integrated Programme Schedule;CIVILS;CONSTRUCTION;Cooling Water System;Shaft E",1,1,0.0000831804,0.0120040692,0.0103763988,5,1.0,0.0007348152,0.0068493151,0.0030769231,0.1255625,0.0308093995,0.0328185328,0.0112107623,1.0,0.2678017428
1.4.2.12.5-23,SFE10180,"Shaft E -  Intstall lagging plates and 7th layer of strut",7112,"CCGTD1_IPS",TT_Task,"58724",-,-,-,100,TK_Complete,01/05/2019,14/04/2019,06/05/2019,24/04/2019,"SFE10170 FF","SFE10170","SFE10190 FS","SFE10190",196,230,196,231,45,53,45,54,56,,"CCGT D1_Integrated Programme Schedule;CIVILS;CONSTRUCTION;Cooling Water System;Shaft E",1,1,0.0000834703,0.0118006104,0.0105798576,5,0.6,0.0006677903,0.0068493151,0.0030769231,0.126,0.0302872063,0.0334620335,0.0112107623,0.6,0.24033841
1.4.2.12.5-24,SFE10260,"Shaft E - Cast base slab /skin wall",7112,"CCGTD1_IPS",TT_Task,"58724",-,-,-,100,TK_Complete,03/06/2019,19/05/2019,12/06/2019,11/06/2019,"SFE10250 FF,EV060010 FS","SFE10250,EV060010","SFE10270 SS,SFE10277 FS","SFE10270,SFE10277",200,235,202,238,46,54,47,55,61,,"CCGT D1_Integrated Programme Schedule;CIVILS;CONSTRUCTION;Cooling Water System;Shaft E",2,2,0.0000836773,0.0107833164,0.0115971516,9,0.0,0.0005524455,0.0136986301,0.0061538462,0.1263125,0.0276762402,0.0366795367,0.0201793722,0.0,0.1930760677
1.4.2.12.5-25,SFE10270,"Shaft E - Cast-in bottom layers of struts with base slab",7112,"CCGTD1_IPS",TT_Task,"58724",-,-,-,100,TK_Complete,01/06/2019,22/05/2019,01/06/2019,22/05/2019,"SFE10260 SS","SFE10260","SFE10277 FS","SFE10277",200,235,200,235,46,55,46,55,61,,"CCGT D1_Integrated Programme Schedule;CIVILS;CONSTRUCTION;Cooling Water System;Shaft E",1,1,0.0,0.0105798576,0.0118006104,0,1.0,0.0000812387,0.0068493151,0.0030769231,0.0,0.027154047,0.0373230373,0.0,1.0,0.0
1.4.2.12.5-26,SFE10025,"Shaft E - Implement TTM on Sea Bank Road",7112,"CCGTD1_IPS",TT_Mile,"58724",-,-,-,100,TK_Complete,04/05/2018,19/03/2018,04/05/2018,19/03/2018,"GENSUB61 FS","GENSUB61","SFE00010 FS","SFE00010",144,174,144,174,33,40,33,40,27,,"CCGT D1_Integrated Programme Schedule;CIVILS;CONSTRUCTION;Cooling Water System;Shaft E",1,1,0.0000197083,0.0158697864,0.0034587996,0,1.0,0.0000812387,0.0068493151,0.0030769231,0.02975,0.0407310705,0.0109395109,0.0,1.0,0.0
1.4.2.12.5-27,SFE10035,"Shaft E - Grout Curtain (behind pipe pile wall) (total drilling 1490m)",7112,"CCGTD1_IPS",TT_Task,"58724",-,-,-,100,TK_Complete,26/11/2018,20/11/2018,17/12/2018,10/12/2018,"SFE10030 FS","SFE10030","SFE10045 FS,SFE10029 FS","SFE10045,SFE10029",173,209,176,212,40,48,41,49,39,,"CCGT D1_Integrated Programme Schedule;CIVILS;CONSTRUCTION;Cooling Water System;Shaft E",1,2,0.0000368081,0.0148524924,0.006103764,21,1.0,0.0002950839,0.0068493151,0.0061538462,0.0555625,0.0381201044,0.0193050193,0.0470852018,1.0,0.0876226629
1.4.2.12.5-28,SFE10030,"Shaft E - 610 Dia. Pipe Pile Wall @ 750 c/c (52 nos)",7112,"CCGTD1_IPS",TT_Task,"58724",-,-,-,100,TK_Complete,03/07/2018,04/06/2018,12/09/2018,16/11/2018,"SFE00010 FS,EV017020 FS,EV021610 FF,EV021620 FS,EV011210 FS","SFE00010,EV017020,EV021610,EV021620,EV011210","SFE10035 FS,SFE10032 FF","SFE10035,SFE10032",152,185,163,209,35,43,38,48,32,,"CCGT D1_Integrated Programme Schedule;CIVILS;CONSTRUCTION;Cooling Water System;Shaft E",5,2,0.0000411555,0.01525941,0.0059003052,71,0.0,0.0005740229,0.0342465753,0.0061538462,0.062125,0.0391644909,0.0186615187,0.1591928251,0.0,0.2019173788
1.4.2.12.5-29,SFE10029,"Shaft E - Grout Block (at lunching area)",7112,"CCGTD1_IPS",TT_Task,"58724",-,-,-,100,TK_Complete,10/04/2019,12/02/2019,11/05/2019,16/03/2019,"SFE10035 FS,EV011240 FS","SFE10035,EV011240","SFE10110 FS","SFE10110",193,221,197,226,45,51,46,52,53,,"CCGT D1_Integrated Programme Schedule;CIVILS;CONSTRUCTION;Cooling Water System;Shaft E",2,1,0.0000358144,0.0134282808,0.007121058,31,0.8,0.000481146,0.0136986301,0.0030769231,0.0540625,0.034464752,0.0225225225,0.0695067265,0.8,0.163861246
1.4.2.12.5-30,SFE30128,"Shaft E - Connect CW pipe to Discharge Culvert",7112,"CCGTD1_IPS",TT_Task,"58724",-,-,-,100,TK_Complete,12/01/2020,10/12/2019,13/01/2020,18/12/2019,"SFE30125 FS,DBC30010 FS,SFE30127XX FS","SFE30125,DBC30010,SFE30127XX","DBC30030 FS,CW1.2 FF","DBC30030,CW1.2",232,264,232,265,54,61,54,62,88,,"CCGT D1_Integrated Programme Schedule;CIVILS;CONSTRUCTION;Cooling Water System;Shaft E",3,2,0.0000075148,0.0004069176,0.0390640895,1,0.8,0.0001201271,0.0205479452,0.0061538462,0.01134375,0.0010443864,0.1235521236,0.0022421525,0.8,0.0159344456
1.4.2.12.5-31,SFE30170,"Shaft E - Backfill and reinstate to ground level",7112,"CCGTD1_IPS",TT_Task,"58724",-,-,-,100,TK_Complete,05/01/2020,05/01/2020,10/01/2020,10/01/2020,"SFE30165 FS","SFE30165","SFE30180 FF","SFE30180",231,268,232,269,54,62,54,62,87,,"CCGT D1_Integrated Programme Schedule;CIVILS;CONSTRUCTION;Cooling Water System;Shaft E",1,1,0.0000000828,0.0004069176,0.0002034588,5,1.0,0.0001503957,0.0068493151,0.0030769231,0.000125,0.0010443864,0.0006435006,0.0112107623,1.0,0.0283369572
1.4.2.12.5-32,SFE30180,"Shaft E - All stages of TTM ended; traffic resumed to normal at Shaft E location",7112,"CCGTD1_IPS",TT_FinMile,"58724",-,-,-,100,TK_Complete,10/01/2020,10/01/2020,10/01/2020,10/01/2020,"SFE30170 FF","SFE30170","SW1.1 FF,S1090 FF","SW1.1,S1090",232,269,232,269,54,62,54,62,88,,"CCGT D1_Integrated Programme Schedule;CIVILS;CONSTRUCTION;Cooling Water System;Shaft E",1,1,0.0000000828,0.0002034588,0.0004069176,0,1.0,0.0000812387,0.0068493151,0.0030769231,0.000125,0.0005221932,0.0012870013,0.0,1.0,0.0
1.4.2.12.5-33,SFE10278,"Shaft E - Micro tunneling and pipe jacking to Shaft F (Part 1 of 2)",7112,"CCGTD1_IPS",TT_Task,"58724",-,-,-,100,TK_Complete,18/09/2019,17/08/2019,02/10/2019,18/09/2019,"PROMA013 FS,SFE10275 FS,EV062010 FS,SFE10277 FS","PROMA013,SFE10275,EV062010,SFE10277","SFF20030 FS","SFF20030",216,248,218,252,50,57,50,58,77,,"CCGT D1_Integrated Programme Schedule;CIVILS;CONSTRUCTION;Cooling Water System;Shaft E",4,1,0.0001528218,0.0099694812,0.0195320448,14,0.0,0.0011444927,0.0273972603,0.0030769231,0.2306875,0.0255874674,0.0617760618,0.0313901345,0.0,0.4356663033
1.4.2.12.5-34,SFE10280,"Shaft E - Remove jacking frame, thrust block and etc",7112,"CCGTD1_IPS",TT_Task,"58724",-,-,-,100,TK_Complete,01/01/2020,30/10/2019,01/01/2020,12/11/2019,"SFF20040 FF","SFF20040","DBC20090 FS,SFE30045 FS","DBC20090,SFE30045",231,258,231,260,53,60,53,60,86,,"CCGT D1_Integrated Programme Schedule;CIVILS;CONSTRUCTION;Cooling Water System;Shaft E",1,2,0.0001366536,0.00508647,0.0364191251,0,0.0,0.0000812387,0.0068493151,0.0061538462,0.20628125,0.0130548303,0.1151866152,0.0,0.0,0.0
1.4.2.12.5-35,SFE30045,"Shaft E - Install CW pipe to 0.5m above 7th layer of strut and mass fill",7112,"CCGTD1_IPS",TT_Task,"58724",-,-,-,100,TK_Complete,01/01/2020,13/11/2019,02/01/2020,16/11/2019,"PROMA013 FS,SFF20032 FS,SFE10280 FS","PROMA013,SFF20032,SFE10280","SFE30065 FS","SFE30065",231,260,231,261,53,60,53,60,86,,"CCGT D1_Integrated Programme Schedule;CIVILS;CONSTRUCTION;Cooling Water System;Shaft E",3,1,0.0000865135,0.003051882,0.0370295015,1,0.8,0.0001383518,0.0205479452,0.0030769231,0.13059375,0.0078328982,0.1171171171,0.0022421525,0.8,0.0234019891
1.4.2.12.5-36,SFE30065,"Shaft E - Install CW pipe to 0.5m above 6th layer of strut and mass fill",7112,"CCGTD1_IPS",TT_Task,"58724",-,-,-,100,TK_Complete,03/01/2020,18/11/2019,04/01/2020,20/11/2019,"SFE30045 FS","SFE30045","SFE30085 FS","SFE30085",231,261,231,261,53,61,54,61,87,,"CCGT D1_Integrated Programme Schedule;CIVILS;CONSTRUCTION;Cooling Water System;Shaft E",1,1,0.0000795576,0.0028484232,0.0372329603,1,0.8,0.0001983807,0.0068493151,0.0030769231,0.12009375,0.007310705,0.1177606178,0.0022421525,0.8,0.0479987007
1.4.2.12.5-37,SFE30085,"Shaft E - Install CW pipe to 0.5m above 5th layer of strut and mass fill",7112,"CCGTD1_IPS",TT_Task,"58724",-,-,-,100,TK_Complete,01/01/2020,21/11/2019,02/01/2020,22/11/2019,"SFE30065 FS","SFE30065","SFE30105 FS","SFE30105",231,261,231,262,53,61,53,61,86,,"CCGT D1_Integrated Programme Schedule;CIVILS;CONSTRUCTION;Cooling Water System;Shaft E",1,1,0.0000725189,0.0026449644,0.0374364191,1,1.0,0.0002490841,0.0068493151,0.0030769231,0.10946875,0.0067885117,0.1184041184,0.0022421525,1.0,0.0687743365
1.4.2.12.5-38,SFE30105,"Shaft E - Install CW pipe to 0.5m above 4th layer of strut and mass fill",7112,"CCGTD1_IPS",TT_Task,"58724",-,-,-,100,TK_Complete,03/01/2020,23/11/2019,04/01/2020,23/11/2019,"SFE30085 FS","SFE30085","SFE30115 FS","SFE30115",231,262,231,262,53,61,54,61,87,,"CCGT D1_Integrated Programme Schedule;CIVILS;CONSTRUCTION;Cooling Water System;Shaft E",1,1,0.0000653975,0.0024415056,0.0376398779,1,1.0,0.0002926392,0.0068493151,0.0030769231,0.09871875,0.0062663185,0.119047619,0.0022421525,1.0,0.0866209651
1.4.2.12.5-39,SFE30125,"Shaft E - Install CW pipe to 0.5m above 2nd layer of strut and mass fill",7112,"CCGTD1_IPS",TT_Task,"58724",-,-,-,100,TK_Complete,07/01/2020,27/11/2019,08/01/2020,28/11/2019,"SFE30115 FS","SFE30115","SFE30128 FS,DBC30010 FF,SFE30127XX FS,DBC20065 FF","SFE30128,DBC30010,SFE30127XX,DBC20065",231,262,232,262,54,61,54,61,87,,"CCGT D1_Integrated Programme Schedule;CIVILS;CONSTRUCTION;Cooling Water System;Shaft E",1,4,0.0000509061,0.002034588,0.0380467955,1,1.0,0.0003601892,0.0068493151,0.0123076923,0.07684375,0.0052219321,0.1203346203,0.0022421525,1.0,0.1142994312
1.4.2.12.5-40,SFE10275,"Shaft E - Break through the pipe pile wall for launching TBM",7112,"CCGTD1_IPS",TT_Task,"58724",-,-,-,100,TK_Complete,05/08/2019,12/06/2019,15/08/2019,27/06/2019,"SFE10029e FS,SFE10277 SS","SFE10029e,SFE10277","SFE10278 FS","SFE10278",209,238,211,240,48,55,49,56,69,,"CCGT D1_Integrated Programme Schedule;CIVILS;CONSTRUCTION;Cooling Water System;Shaft E",2,1,0.000010351,0.01017294,0.013224822,10,0.2,0.0005523208,0.0136986301,0.0030769231,0.015625,0.0261096606,0.0418275418,0.0224215247,0.2,0.1930249994
1.4.2.12.5-41,SFE10277,"Shaft E - Set up and launch TBM to Shaft F",7112,"CCGTD1_IPS",TT_Task,"58724",-,-,-,100,TK_Complete,01/08/2019,12/06/2019,25/08/2019,16/08/2019,"SFE10270 FS,SFE10260 FS","SFE10270,SFE10260","SFE10275 SS,SFE10278 FS","SFE10275,SFE10278",209,238,212,248,48,55,49,57,68,,"CCGT D1_Integrated Programme Schedule;CIVILS;CONSTRUCTION;Cooling Water System;Shaft E",2,2,0.0000831804,0.0103763988,0.0120040692,24,0.0,0.0006123246,0.0136986301,0.0061538462,0.1255625,0.0266318538,0.037966538,0.0538116592,0.0,0.2176114479
1.4.2.12.5-42,SFE30127XX,"Testing to CWP between Shaft E and Shaft F (Part 1 of 2)",7112,"CCGTD1_IPS",TT_Task,"58724",-,-,-,100,TK_Complete,01/01/2020,29/11/2019,07/01/2020,29/11/2019,"SFE30125 FS","SFE30125","SFE30128 FS,SFF20033XX FF","SFE30128,SFF20033XX",231,263,231,263,53,61,54,61,86,,"CCGT D1_Integrated Programme Schedule;CIVILS;CONSTRUCTION;Cooling Water System;Shaft E",1,2,0.0000002898,0.0008138352,0.0382502543,6,1.0,0.0001306716,0.0068493151,0.0061538462,0.0004375,0.0020887728,0.120978121,0.0134529148,1.0,0.0202550259
1.4.2.12.5-43,SFE10190,"Shaft E - Excavate to below 8th layer of strut",7112,"CCGTD1_IPS",TT_Task,"58724",-,-,-,100,TK_Complete,01/05/2019,25/04/2019,06/05/2019,01/05/2019,"SFE10180 FS","SFE10180","SFE10200 FS","SFE10200",196,231,196,232,45,54,45,54,56,,"CCGT D1_Integrated Programme Schedule;CIVILS;CONSTRUCTION;Cooling Water System;Shaft E",1,1,0.0000836773,0.0115971516,0.0107833164,5,0.8,0.0005878053,0.0068493151,0.0030769231,0.1263125,0.0297650131,0.0341055341,0.0112107623,0.8,0.2075647056
1.4.2.12.5-44,SFE10200,"Shaft E -  Intstall lagging plates and 8th layer of strut",7112,"CCGTD1_IPS",TT_Task,"58724",-,-,-,100,TK_Complete,03/06/2019,02/05/2019,06/06/2019,05/05/2019,"SFE10190 FS","SFE10190","SFE10250 FS","SFE10250",200,232,201,233,46,54,46,54,61,,"CCGT D1_Integrated Programme Schedule;CIVILS;CONSTRUCTION;Cooling Water System;Shaft E",1,1,0.0000838015,0.0113936928,0.0109867752,3,1.0,0.0005646771,0.0068493151,0.0030769231,0.1265,0.0292428198,0.0347490347,0.0067264574,1.0,0.1980879498
1.4.2.12.5-45,SFE30115,"Shaft E - Install CW pipe to 0.5m above 3rd layer of strut and mass fill",7112,"CCGTD1_IPS",TT_Task,"58724",-,-,-,100,TK_Complete,05/01/2020,24/11/2019,06/01/2020,26/11/2019,"SFE30105 FS","SFE30105","SFE30125 FS","SFE30125",231,262,231,262,54,61,54,61,87,,"CCGT D1_Integrated Programme Schedule;CIVILS;CONSTRUCTION;Cooling Water System;Shaft E",1,1,0.0000581932,0.0022380468,0.0378433367,1,0.6,0.00032864,0.0068493151,0.0030769231,0.08784375,0.0057441253,0.1196911197,0.0022421525,0.6,0.1013721888
1.4.2.12.5-46,SFE30165,"Shaft E - Trim pipe piles",7112,"CCGTD1_IPS",TT_Task,"58724",-,-,-,100,TK_Complete,01/01/2020,01/01/2020,04/01/2020,04/01/2020,"","","SFE30170 FS","SFE30170",231,267,231,268,53,62,54,62,86,,"CCGT D1_Integrated Programme Schedule;CIVILS;CONSTRUCTION;Cooling Water System;Shaft E",0,1,0.0,0.0006103764,0.0,3,1.0,0.0000812387,0.0,0.0030769231,0.0,0.0015665796,0.0,0.0067264574,1.0,0.0
1.4.2.12.5-47,SFE10046,"Shaft E - BD Consent for Excavation & ELS from +4.7 to -1.6 mPD",7112,"CCGTD1_IPS",TT_Task,"58724",-,-,-,100,TK_Complete,02/04/2019,29/01/2019,29/04/2019,25/02/2019,"SFE10045 FF","SFE10045","SFE10070 FS,SFE10070 FF","SFE10070,SFE10070",191,219,195,223,44,51,45,52,52,,"CCGT D1_Integrated Programme Schedule;CIVILS;CONSTRUCTION;Cooling Water System;Shaft E",1,1,0.0000030639,0.014242116,0.0065106816,27,1.0,0.0002343768,0.0068493151,0.0030769231,0.004625,0.0365535248,0.0205920206,0.0605381166,1.0,0.0627480266
1.4.2.12.5-48,SFE10029a,"Shaft E /Grout Block - Complete grout at pre-determined core locations",7112,"CCGTD1_IPS",TT_FinMile,"58724",-,-,-,100,TK_Complete,29/04/2019,27/02/2019,29/04/2019,27/02/2019,"","","SFE10029b FS","SFE10029b",195,223,195,223,45,52,45,52,55,,"CCGT D1_Integrated Programme Schedule;CIVILS;CONSTRUCTION;Cooling Water System;Shaft E",0,1,0.0,0.011190234,0.0,0,1.0,0.0000812387,0.0,0.0030769231,0.0,0.0287206266,0.0,0.0,1.0,0.0
1.4.2.12.5-49,SFE10029b,"Shaft E /Grout Block - Core sample",7112,"CCGTD1_IPS",TT_Task,"58724",-,-,-,100,TK_Complete,17/05/2019,27/02/2019,06/06/2019,15/03/2019,"SFE10029a FS","SFE10029a","SFE10029c FS","SFE10029c",198,223,201,226,46,52,46,52,59,,"CCGT D1_Integrated Programme Schedule;CIVILS;CONSTRUCTION;Cooling Water System;Shaft E",1,1,0.0000022358,0.0109867752,0.0002034588,20,1.0,0.0001503957,0.0068493151,0.0030769231,0.003375,0.0281984334,0.0006435006,0.0448430493,1.0,0.0283369572
1.4.2.12.5-50,SFE10029c,"Shaf E /Grout Block - Test to early achievement of 28 day strength",7112,"CCGTD1_IPS",TT_Task,"58724",-,-,-,100,TK_Complete,29/04/2019,12/03/2019,01/05/2019,29/03/2019,"SFE10029b FS","SFE10029b","SFE10029d FS","SFE10029d",195,225,196,228,45,52,45,53,55,,"CCGT D1_Integrated Programme Schedule;CIVILS;CONSTRUCTION;Cooling Water System;Shaft E",1,1,0.0000043888,0.0107833164,0.0004069176,2,0.0,0.000209244,0.0068493151,0.0030769231,0.006625,0.0276762402,0.0012870013,0.0044843049,0.0,0.0524499399
1.4.2.12.5-51,SFE10029d,"Shaft E/ Grout Block - Jet grout assessment report (AF TBC)",7112,"CCGTD1_IPS",TT_Task,"58724",-,-,-,100,TK_Complete,04/05/2019,30/03/2019,10/05/2019,23/04/2019,"SFE10029c FS","SFE10029c","SFE10029e FF","SFE10029e",196,228,197,231,45,53,46,54,57,,"CCGT D1_Integrated Programme Schedule;CIVILS;CONSTRUCTION;Cooling Water System;Shaft E",1,1,0.000006459,0.0105798576,0.0006103764,6,0.0,0.0002593786,0.0068493151,0.0030769231,0.00975,0.027154047,0.0019305019,0.0134529148,0.0,0.0729924654
1.4.2.12.5-52,SFE10029e,"Shaft E - BA8 consent for pile wall opening",7112,"CCGTD1_IPS",TT_Task,"58724",-,-,-,100,TK_Complete,04/05/2019,18/04/2019,31/05/2019,12/06/2019,"SFE10029d FF","SFE10029d","SFE10275 FS","SFE10275",196,230,200,238,45,53,46,55,57,,"CCGT D1_Integrated Programme Schedule;CIVILS;CONSTRUCTION;Cooling Water System;Shaft E",1,1,0.0000084464,0.0103763988,0.0008138352,27,0.0,0.0003021254,0.0068493151,0.0030769231,0.01275,0.0266318538,0.0025740026,0.0605381166,0.0,0.0905078876
1.4.2.12.5-53,SFE10032,"Shaft E - BD Consent for Excavation & ELS above +4.7 mPD",7112,"CCGTD1_IPS",TT_Task,"58724",-,-,-,100,TK_Complete,26/12/2018,18/12/2018,22/01/2019,25/02/2019,"SFE10030 FF","SFE10030","SFE10070 FS","SFE10070",178,213,181,223,41,49,42,52,42,,"CCGT D1_Integrated Programme Schedule;CIVILS;CONSTRUCTION;Cooling Water System;Shaft E",1,1,0.0000049685,0.014242116,0.006103764,27,0.0,0.0003561825,0.0068493151,0.0030769231,0.0075,0.0365535248,0.0193050193,0.0605381166,0.0,0.1126577095
1.4.2.12.5-54,EV011190,"Event 011E - Trial jet grout consent condition imposed on shaft excavation",7112,"CCGTD1_IPS",TT_FinMile,"58724",-,-,-,100,TK_Complete,23/04/2018,26/02/2018,23/04/2018,26/02/2018,"","","","",142,171,142,171,33,40,33,40,25,,"CCGT D1_Integrated Programme Schedule;CIVILS;CONSTRUCTION;Cooling Water System;Shaft E",0,0,0.0,0.0,0.0,0,1.0,0.0000812387,0.0,0.0,0.0,0.0,0.0,0.0,1.0,0.0
1.4.2.12.5-55,EV011200,"Event 011E - Install trial get grout ( x3 nos.)",7112,"CCGTD1_IPS",TT_Task,"58724",-,-,-,100,TK_Complete,27/08/2018,04/08/2018,30/08/2018,07/08/2018,"SFE_BA58b FS","SFE_BA58b","EV011210 FS","EV011210",160,194,161,194,37,45,37,45,35,,"CCGT D1_Integrated Programme Schedule;CIVILS;CONSTRUCTION;Cooling Water System;Shaft E",1,1,0.000002567,0.0164801628,0.0004069176,3,1.0,0.0000853679,0.0068493151,0.0030769231,0.003875,0.0422976501,0.0012870013,0.0067264574,1.0,0.0016919335
1.4.2.12.5-56,EV011210,"Event 011E - Permeability Test + Core sample after 21 days from grout installed",7112,"CCGTD1_IPS",TT_Task,"58724",-,-,-,100,TK_Complete,06/12/2018,07/09/2018,19/12/2018,20/09/2018,"EV011200 FS,EV034030 FS","EV011200,EV034030","EV011220 FS,SFE10030 FS,EV011225 FS","EV011220,SFE10030,EV011225",175,199,177,200,40,46,41,46,42,,"CCGT D1_Integrated Programme Schedule;CIVILS;CONSTRUCTION;Cooling Water System;Shaft E",2,3,0.0000157335,0.016276704,0.0012207528,13,1.0,0.0003320512,0.0136986301,0.0092307692,0.02375,0.0417754569,0.0038610039,0.0291479821,1.0,0.1027699228
1.4.2.12.5-57,EV011220,"Event 011E - Test to early achievement of 28 day strength",7112,"CCGTD1_IPS",TT_Task,"58724",-,-,-,100,TK_Complete,06/12/2018,13/09/2018,08/12/2018,21/09/2018,"EV011210 FS","EV011210","EV011230 FS","EV011230",175,199,175,201,40,46,40,46,42,,"CCGT D1_Integrated Programme Schedule;CIVILS;CONSTRUCTION;Cooling Water System;Shaft E",1,1,0.0000040369,0.0140386572,0.0014242116,2,0.4,0.0000868933,0.0068493151,0.0030769231,0.00609375,0.0360313316,0.0045045045,0.0044843049,0.4,0.0023169709
1.4.2.12.5-58,EV011230,"Event 011E - Formal test report issued for submission in 7 calendar days",7112,"CCGTD1_IPS",TT_Task,"58724",-,-,-,100,TK_Complete,06/12/2018,03/11/2018,12/12/2018,04/12/2018,"EV011220 FS,EV011225 FS","EV011220,EV011225","EV011240 FF","EV011240",175,207,176,211,40,48,41,49,42,,"CCGT D1_Integrated Programme Schedule;CIVILS;CONSTRUCTION;Cooling Water System;Shaft E",2,1,0.0000134149,0.0138351984,0.0018311292,6,0.0,0.0002894115,0.0136986301,0.0030769231,0.02025,0.0355091384,0.0057915058,0.0134529148,0.0,0.0852984047
1.4.2.12.5-59,EV011240,"Event 011E - Shaft E - BA8 for full scale grout block and excav below -1.6 mPD",7112,"CCGTD1_IPS",TT_Task,"58724",-,-,-,100,TK_Complete,05/01/2019,30/11/2018,01/02/2019,24/12/2018,"EV011230 FF","EV011230","SFE10029 FS,SFE10110 FS","SFE10029,SFE10110",179,211,183,214,41,49,42,50,43,,"CCGT D1_Integrated Programme Schedule;CIVILS;CONSTRUCTION;Cooling Water System;Shaft E",1,2,0.0000158163,0.0136317396,0.002034588,27,1.0,0.0003276277,0.0068493151,0.0061538462,0.023875,0.0349869452,0.0064350064,0.0605381166,1.0,0.1009573991
1.4.2.12.5-60,EV021610,"Event 021E - AAA amendment (and cofferdam enlargement) for Shaft E",7112,"CCGTD1_IPS",TT_Task,"58724",-,-,-,100,TK_Complete,26/07/2018,29/06/2018,24/08/2018,27/07/2018,"","","SFE10030 FF,EV021910 SS,EV021910 FF,OAM_BA58 SS,OAM_BA58 FF,EV025900 FF,EV017030 FS,EV021620 FS","SFE10030,EV021910,EV021910,OAM_BA58,OAM_BA58,EV025900,EV017030,EV021620",156,189,160,193,36,44,37,45,33,,"CCGT D1_Integrated Programme Schedule;CIVILS;CONSTRUCTION;Cooling Water System;Shaft E",0,4,0.0,0.0219735504,0.0,29,1.0,0.0000812387,0.0,0.0123076923,0.0,0.0563968668,0.0,0.0650224215,1.0,0.0
1.4.2.12.5-61,EV060010,"Event 060E - Probing test to jet grout block",7112,"CCGTD1_IPS",TT_Task,"58724",-,-,-,100,TK_Complete,01/06/2019,16/05/2019,02/06/2019,16/05/2019,"SFE10250 SS","SFE10250","SFE10260 FS","SFE10260",200,234,200,234,46,54,46,54,61,,"CCGT D1_Integrated Programme Schedule;CIVILS;CONSTRUCTION;Cooling Water System;Shaft E",1,1,0.0,0.0109867752,0.0113936928,1,1.0,0.0001221353,0.0068493151,0.0030769231,0.0,0.0281984334,0.036036036,0.0022421525,1.0,0.0167572806
1.4.2.12.6,58723,"Shaft D",7112,"CCGTD1_IPS",WBS,"58715",,,,100,Complete,23/10/2017,08/09/2017,09/01/2020,08/11/2019,,,,,116,147,232,260,27,34,54,60,,,"CCGT D1_Integrated Programme Schedule;CIVILS;CONSTRUCTION;Cooling Water System"
1.4.2.12.6-1,EV017012,"Event 017D - Shaft D Advanced Precautionary Grouting (1 out of 53)",7112,"CCGTD1_IPS",TT_Task,"58723",-,-,-,100,TK_Complete,26/07/2018,21/06/2018,26/07/2018,22/06/2018,"SFD00010 FS,EV017010 FS","SFD00010,EV017010","EV025400 FS","EV025400",156,187,156,188,36,43,36,43,33,,"CCGT D1_Integrated Programme Schedule;CIVILS;CONSTRUCTION;Cooling Water System;Shaft D",2,0,0.0,0.0,0.0038657172,0,1.0,0.0000812387,0.0136986301,0.0,0.0,0.0,0.0122265122,0.0,1.0,0.0
1.4.2.12.6-2,EV017014,"Event 017D - Shaft D Advanced Precautionary Grouting (9 out of 53)",7112,"CCGTD1_IPS",TT_Task,"58723",-,-,-,100,TK_Complete,26/07/2018,26/06/2018,26/07/2018,03/07/2018,"EV025400 FS","EV025400","EV031010 FS","EV031010",156,188,156,189,36,44,36,44,33,,"CCGT D1_Integrated Programme Schedule;CIVILS;CONSTRUCTION;Cooling Water System;Shaft D",0,1,0.0,0.0002034588,0.0,0,0.4,0.0000812387,0.0,0.0030769231,0.0,0.0005221932,0.0,0.0,0.4,0.0
1.4.2.12.6-3,EV031010,"Event 031D - Works suspended after FS main stirke in Diversion Culvet works area",7112,"CCGTD1_IPS",TT_Task,"58723",-,-,-,100,TK_Complete,26/07/2018,04/07/2018,26/07/2018,09/07/2018,"EV017014 FS","EV017014","","",156,189,156,190,36,44,36,44,33,,"CCGT D1_Integrated Programme Schedule;CIVILS;CONSTRUCTION;Cooling Water System;Shaft D",1,0,0.0,0.0,0.0002034588,0,0.6,0.0000812387,0.0068493151,0.0,0.0,0.0,0.0006435006,0.0,0.6,0.0
1.4.2.12.6-4,EV032010,"Event 032D - Works suspension instructed to await BD consent",7112,"CCGTD1_IPS",TT_Task,"58723",-,-,-,100,TK_Complete,26/07/2018,12/07/2018,26/07/2018,23/07/2018,"","","EV032020 FF","EV032020",156,190,156,192,36,44,36,44,33,,"CCGT D1_Integrated Programme Schedule;CIVILS;CONSTRUCTION;Cooling Water System;Shaft D",0,1,0.0,0.0006103764,0.0,0,0.0,0.0000812387,0.0,0.0030769231,0.0,0.0015665796,0.0,0.0,0.0,0.0
1.4.2.12.6-5,EV021320,"Event 021D - Shaft D AAA amendment / consent for APG & trial jet grout",7112,"CCGTD1_IPS",TT_Task,"58723",-,-,-,100,TK_Complete,26/07/2018,18/06/2018,22/08/2018,25/07/2018,"SFDt1BA8a FS","SFDt1BA8a","","",156,187,160,192,36,43,37,44,33,,"CCGT D1_Integrated Programme Schedule;CIVILS;CONSTRUCTION;Cooling Water System;Shaft D",1,0,0.0,0.0,0.0004069176,27,0.2,0.0002004161,0.0068493151,0.0,0.0,0.0,0.0012870013,0.0605381166,0.2,0.0488327027
1.4.2.12.6-6,EV032020,"Event 032D - Site Memo 383 suggesting works can be resumed as 28d consent statutory time overdue since 15/7/18",7112,"CCGTD1_IPS",TT_FinMile,"58723",-,-,-,100,TK_Complete,26/07/2018,23/07/2018,26/07/2018,23/07/2018,"EV032010 FF","EV032010","EV011140 FS","EV011140",156,192,156,192,36,44,36,44,33,,"CCGT D1_Integrated Programme Schedule;CIVILS;CONSTRUCTION;Cooling Water System;Shaft D",1,1,0.0000000828,0.0004069176,0.0002034588,0,1.0,0.0000812387,0.0068493151,0.0030769231,0.000125,0.0010443864,0.0006435006,0.0,1.0,0.0
1.4.2.12.6-7,EV017016,"Event 017D - Shaft D Advanced Precautionary Grouting (11 out of 53)",7112,"CCGTD1_IPS",TT_Task,"58723",-,-,-,100,TK_Complete,26/08/2018,29/07/2018,30/08/2018,02/08/2018,"EV011140 FS","EV011140","","",160,193,161,193,37,45,37,45,35,,"CCGT D1_Integrated Programme Schedule;CIVILS;CONSTRUCTION;Cooling Water System;Shaft D",1,0,0.0,0.0,0.001017294,4,1.0,0.0002167601,0.0068493151,0.0,0.0,0.0,0.0032175032,0.0089686099,1.0,0.0555296302
1.4.2.12.6-8,EV033010,"Event 033 - ROI #144 / date of issuance",7112,"CCGTD1_IPS",TT_FinMile,"58723",-,-,-,100,TK_Complete,26/08/2018,24/08/2018,26/08/2018,24/08/2018,"","","","",160,197,160,197,37,45,37,45,35,,"CCGT D1_Integrated Programme Schedule;CIVILS;CONSTRUCTION;Cooling Water System;Shaft D",0,0,0.0,0.0,0.0,0,1.0,0.0000812387,0.0,0.0,0.0,0.0,0.0,0.0,1.0,0.0
1.4.2.12.6-9,SFD00010,"Shaft D - Utilities Diversion",7112,"CCGTD1_IPS",TT_Task,"58723",-,-,-,100,TK_Complete,23/04/2018,07/03/2018,14/06/2018,20/06/2018,"GENSUB50e FS,GENSUB50f FS","GENSUB50e,GENSUB50f","EV017012 FS","EV017012",142,172,150,187,33,40,35,43,25,,"CCGT D1_Integrated Programme Schedule;CIVILS;CONSTRUCTION;Cooling Water System;Shaft D",2,1,0.0000006625,0.0002034588,0.0032553408,52,0.0,0.0003677931,0.0136986301,0.0030769231,0.001,0.0005221932,0.0102960103,0.1165919283,0.0,0.1174151316
1.4.2.12.6-10,SFD10302,"Grouting and Welding to CWP between Shaft E and Shaft F (Part 1 of 2)",7112,"CCGTD1_IPS",TT_Task,"58723",-,-,-,100,TK_Complete,01/01/2020,31/10/2019,09/01/2020,08/11/2019,"SFF20040 FS","SFF20040","SFF20032 FS","SFF20032",231,258,232,260,53,60,54,60,86,,"CCGT D1_Integrated Programme Schedule;CIVILS;CONSTRUCTION;Cooling Water System;Shaft D",1,1,0.0000074113,0.0034587996,0.0364191251,8,1.0,0.0003021948,0.0068493151,0.0030769231,0.0111875,0.0088772846,0.1151866152,0.0179372197,1.0,0.0905363488
1.4.2.12.6-11,EV011130,"Event 011D - Trial jet grout consent condition imposed on shaft excavation",7112,"CCGTD1_IPS",TT_FinMile,"58723",-,-,-,100,TK_Complete,23/04/2018,26/02/2018,23/04/2018,26/02/2018,"","","","",142,171,142,171,33,40,33,40,25,,"CCGT D1_Integrated Programme Schedule;CIVILS;CONSTRUCTION;Cooling Water System;Shaft D",0,0,0.0,0.0,0.0,0,1.0,0.0000812387,0.0,0.0,0.0,0.0,0.0,0.0,1.0,0.0
1.4.2.12.6-12,EV011140,"Event 011D - Install trial jet grout",7112,"CCGTD1_IPS",TT_Task,"58723",-,-,-,100,TK_Complete,26/07/2018,25/07/2018,28/07/2018,28/07/2018,"SFDt1BA8a FS,EV032020 FS","SFDt1BA8a,EV032020","EV017016 FS","EV017016",156,192,156,193,36,44,36,45,33,,"CCGT D1_Integrated Programme Schedule;CIVILS;CONSTRUCTION;Cooling Water System;Shaft D",2,1,0.0000001656,0.0002034588,0.0008138352,2,0.8,0.0001592237,0.0136986301,0.0030769231,0.00025,0.0005221932,0.0025740026,0.0044843049,0.8,0.0319541944
1.4.2.12.6-13,EV017010,"Event 017D - Shaft D Advanced Precautionary Grouting (32 out of 53)",7112,"CCGTD1_IPS",TT_Task,"58723",-,-,-,100,TK_Complete,06/06/2018,05/05/2018,05/07/2018,09/06/2018,"EV021310 FS","EV021310","EV017012 FS","EV017012",149,181,153,186,34,42,35,43,30,,"CCGT D1_Integrated Programme Schedule;CIVILS;CONSTRUCTION;Cooling Water System;Shaft D",1,1,0.0000000414,0.0002034588,0.0002034588,29,0.2,0.0001503957,0.0068493151,0.0030769231,0.0000625,0.0005221932,0.0006435006,0.0650224215,0.2,0.0283369572
1.4.2.12.6-14,EV021310,"Event 021D - Shaft D AAA amendment (Type II) / submission & approval",7112,"CCGTD1_IPS",TT_Task,"58723",-,-,-,100,TK_Complete,26/06/2018,30/05/2018,25/07/2018,03/07/2018,"","","EV017010 FS","EV017010",151,184,156,189,35,43,36,44,31,,"CCGT D1_Integrated Programme Schedule;CIVILS;CONSTRUCTION;Cooling Water System;Shaft D",0,1,0.0,0.0004069176,0.0,29,0.2,0.0000812387,0.0,0.0030769231,0.0,0.0010443864,0.0,0.0650224215,0.2,0.0
1.4.2.12.7,58722,"Double Pipe Trench",7112,"CCGTD1_IPS",WBS,"58715",,,,100,Complete,25/09/2017,23/09/2017,06/03/2020,05/02/2020,,,,,112,149,240,272,26,34,56,63,,,"CCGT D1_Integrated Programme Schedule;CIVILS;CONSTRUCTION;Cooling Water System"
1.4.2.12.7-1,EV039010,"Event 039(ZA) - Transformer Generator resequencing amendment (Part 1)",7112,"CCGTD1_IPS",TT_Task,"58722",-,-,-,100,TK_Complete,26/07/2018,29/06/2018,24/08/2018,27/07/2018,"","","","",156,189,160,193,36,44,37,45,33,,"CCGT D1_Integrated Programme Schedule;CIVILS;CONSTRUCTION;Cooling Water System;Double Pipe Trench",0,0,0.0,0.0,0.0,29,1.0,0.0000812387,0.0,0.0,0.0,0.0,0.0,0.0650224215,1.0,0.0
1.4.2.12.7-2,EV039020,"Event 039(ZA) - Transformer Generator resequencing amendment (Part 2)",7112,"CCGTD1_IPS",TT_Task,"58722",-,-,-,100,TK_Complete,26/08/2018,24/08/2018,24/09/2018,20/09/2018,"","","DPT10150 FS","DPT10150",160,197,164,200,37,45,38,46,35,,"CCGT D1_Integrated Programme Schedule;CIVILS;CONSTRUCTION;Cooling Water System;Double Pipe Trench",0,1,0.0,0.001017294,0.0,29,1.0,0.0000812387,0.0,0.0030769231,0.0,0.0026109661,0.0,0.0650224215,1.0,0.0
1.4.2.12.7-3,EV042010,"Event 042 - Zone B FEL amendment (Type II)",7112,"CCGTD1_IPS",TT_Task,"58722",-,-,-,100,TK_Complete,26/01/2019,30/11/2018,24/02/2019,28/12/2018,"","","EV042020 FF","EV042020",182,211,186,215,42,49,43,50,44,,"CCGT D1_Integrated Programme Schedule;CIVILS;CONSTRUCTION;Cooling Water System;Double Pipe Trench",0,1,0.0,0.0002034588,0.0,29,1.0,0.0000812387,0.0,0.0030769231,0.0,0.0005221932,0.0,0.0650224215,1.0,0.0
1.4.2.12.7-4,EV042020,"Event 042 - BA8 consent for Zone B FEL amendment",7112,"CCGTD1_IPS",TT_Task,"58722",-,-,-,100,TK_Complete,26/01/2019,30/11/2018,24/02/2019,28/12/2018,"EV042010 FF","EV042010","","",182,211,186,215,42,49,43,50,44,,"CCGT D1_Integrated Programme Schedule;CIVILS;CONSTRUCTION;Cooling Water System;Double Pipe Trench",1,0,0.0,0.0,0.0002034588,29,1.0,0.0001503957,0.0068493151,0.0,0.0,0.0,0.0006435006,0.0650224215,1.0,0.0283369572
1.4.2.12.7-5,EV006010,"Event 006 - Unchartered UU found at Zone A (slow down pre-boring progress)",7112,"CCGTD1_IPS",TT_Task,"58722",-,-,-,100,TK_Complete,23/10/2017,09/11/2017,23/10/2017,29/12/2017,"","","DPT10010 FF","DPT10010",116,155,116,163,27,36,27,38,13,,"CCGT D1_Integrated Programme Schedule;CIVILS;CONSTRUCTION;Cooling Water System;Double Pipe Trench",0,1,0.0,0.0103763988,0.0,0,0.0,0.0000812387,0.0,0.0030769231,0.0,0.0266318538,0.0,0.0,0.0,0.0
1.4.2.12.7-6,DPT10010,"DPT /Zone A (Southern Section) - Pre-boring for sheet pile wall",7112,"CCGTD1_IPS",TT_Task,"58722",-,-,-,100,TK_Complete,17/10/2017,13/10/2017,15/11/2017,14/01/2018,"PROSC020 FS,ESTAB010 FS,EV006010 FF","PROSC020,ESTAB010,EV006010","DPT10020 FF,RWPR0010 SS","DPT10020,RWPR0010",115,152,120,165,27,35,28,38,12,,"CCGT D1_Integrated Programme Schedule;CIVILS;CONSTRUCTION;Cooling Water System;Double Pipe Trench",3,1,0.0000071008,0.01017294,0.001017294,29,0.0,0.0002374064,0.0205479452,0.0030769231,0.01071875,0.0261096606,0.0032175032,0.0650224215,0.0,0.0639893929
1.4.2.12.7-7,DPT10060,"DPT /Zone A (Southern Section) - Install 1st layer of struts",7112,"CCGTD1_IPS",TT_Task,"58722",-,-,-,100,TK_Complete,02/08/2018,05/07/2018,16/08/2018,13/08/2018,"DPT10050 FS","DPT10050","DPT10070 FF","DPT10070",157,189,159,195,36,44,37,45,34,,"CCGT D1_Integrated Programme Schedule;CIVILS;CONSTRUCTION;Cooling Water System;Double Pipe Trench",1,1,0.0000226065,0.0085452696,0.0056968464,14,0.0,0.0003212218,0.0068493151,0.0030769231,0.034125,0.0219321149,0.018018018,0.0313901345,0.0,0.0983326215
1.4.2.12.7-8,DPT40010,"DPT /Seal Pit - Construct parts of structure within Zone C",7112,"CCGTD1_IPS",TT_Task,"58722",-,-,-,100,TK_Complete,01/01/2020,19/09/2019,23/02/2020,19/12/2019,"DPT30100 FS,CWS_2BA8XX FS,SEAp2BA8 FS","DPT30100,CWS_2BA8XX,SEAp2BA8","DPT30150 FF,DPT40020 FF,DPT40040 FS","DPT30150,DPT40020,DPT40040",231,252,238,265,53,59,55,62,86,,"CCGT D1_Integrated Programme Schedule;CIVILS;CONSTRUCTION;Cooling Water System;Double Pipe Trench",3,3,0.0000103717,0.0014242116,0.009155646,53,0.0,0.0007130154,0.0205479452,0.0092307692,0.01565625,0.0036553525,0.028957529,0.1188340807,0.0,0.258869312
1.4.2.12.7-9,DPT10050,"DPT /Zone A (Southern Section) - Excavate to 0.5m below 1st layer of struts",7112,"CCGTD1_IPS",TT_Task,"58722",-,-,-,100,TK_Complete,26/07/2018,26/06/2018,03/08/2018,06/07/2018,"DPT10045 FS,EV021830 FS,EV012130 FS","DPT10045,EV021830,EV012130","DPT10060 FS","DPT10060",156,188,157,190,36,44,36,44,33,,"CCGT D1_Integrated Programme Schedule;CIVILS;CONSTRUCTION;Cooling Water System;Double Pipe Trench",3,1,0.0000219855,0.0087487284,0.0054933876,8,1.0,0.0002819049,0.0205479452,0.0030769231,0.0331875,0.0224543081,0.0173745174,0.0179372197,1.0,0.0822225768
1.4.2.12.7-10,DPT10040,"DPT /Zone A (Southern Section) - Pumping Test and Report Submission",7112,"CCGTD1_IPS",TT_Task,"58722",-,-,-,100,TK_Complete,10/04/2018,09/02/2018,21/04/2018,24/02/2018,"DPT10020 FS","DPT10020","DPT10045 FS","DPT10045",140,169,142,171,32,39,33,39,24,,"CCGT D1_Integrated Programme Schedule;CIVILS;CONSTRUCTION;Cooling Water System;Double Pipe Trench",1,1,0.0000208262,0.009155646,0.0026449644,11,0.6,0.0001732171,0.0068493151,0.0030769231,0.0314375,0.0234986945,0.0083655084,0.0246636771,0.6,0.037687966
1.4.2.12.7-11,DPT10020,"DPT /Zone A (Southern Section) - Sheet Piling",7112,"CCGTD1_IPS",TT_Task,"58722",-,-,-,100,TK_Complete,02/11/2017,02/11/2017,27/11/2017,31/01/2018,"DPT10010 FF,SFF-BA58b FS","DPT10010,SFF-BA58b","DPT10040 FS,DPT20010 FF","DPT10040,DPT20010",118,154,121,167,27,36,28,39,13,,"CCGT D1_Integrated Programme Schedule;CIVILS;CONSTRUCTION;Cooling Water System;Double Pipe Trench",2,2,0.0000208883,0.0099694812,0.0024415056,25,0.0,0.0004811399,0.0136986301,0.0061538462,0.03153125,0.0255874674,0.0077220077,0.0560538117,0.0,0.1638587652
1.4.2.12.7-12,DPT10080,"DPT /Zone A (Southern Section) - Install 2nd layer of struts",7112,"CCGTD1_IPS",TT_Task,"58722",-,-,-,100,TK_Complete,27/08/2018,25/08/2018,20/09/2018,05/10/2018,"DPT10070 FF","DPT10070","DPT10090 FF","DPT10090",160,197,164,203,37,46,38,47,35,,"CCGT D1_Integrated Programme Schedule;CIVILS;CONSTRUCTION;Cooling Water System;Double Pipe Trench",1,1,0.0000462896,0.008138352,0.006103764,24,0.0,0.0004970023,0.0068493151,0.0030769231,0.069875,0.0208877285,0.0193050193,0.0538116592,0.0,0.1703583389
1.4.2.12.7-13,DPT10070,"DPT /Zone A (Southern Section) - Excavate to 0.5m below 2nd layer of struts",7112,"CCGTD1_IPS",TT_Task,"58722",-,-,-,100,TK_Complete,07/09/2018,09/08/2018,24/09/2018,25/08/2018,"DPT10060 FF,DPT10045 FS","DPT10060,DPT10045","DPT10080 FF","DPT10080",162,194,164,197,37,45,38,46,36,,"CCGT D1_Integrated Programme Schedule;CIVILS;CONSTRUCTION;Cooling Water System;Double Pipe Trench",2,1,0.0000458341,0.0083418108,0.0059003052,17,1.0,0.0004875558,0.0136986301,0.0030769231,0.0691875,0.0214099217,0.0186615187,0.0381165919,1.0,0.1664876639
1.4.2.12.7-14,DPT10090,"DPT /Zone A (Southern Section) - Excavate to final excavation level -1.4 mPD",7112,"CCGTD1_IPS",TT_Task,"58722",-,-,-,100,TK_Complete,26/11/2018,24/09/2018,04/12/2018,16/10/2018,"DPT10080 FF","DPT10080","DPT10100 FF","DPT10100",173,201,174,204,40,47,40,47,39,,"CCGT D1_Integrated Programme Schedule;CIVILS;CONSTRUCTION;Cooling Water System;Double Pipe Trench",1,1,0.0000466622,0.0079348932,0.0063072228,8,0.0,0.0005051005,0.0068493151,0.0030769231,0.0704375,0.0203655352,0.0199485199,0.0179372197,0.0,0.1736765468
1.4.2.12.7-15,DPT20010,"DPT /Zone B (Middle Section) - Grouting to the eastern side of double pipe trench",7112,"CCGTD1_IPS",TT_Task,"58722",-,-,-,100,TK_Complete,25/09/2017,23/09/2017,02/11/2017,07/02/2018,"DPT10020 FF","DPT10020","DPT20030 FF,SFF_BA58a FS","DPT20030,SFF_BA58a",112,149,118,168,26,34,27,39,11,,"CCGT D1_Integrated Programme Schedule;CIVILS;CONSTRUCTION;Cooling Water System;Double Pipe Trench",1,2,0.0000010144,0.0004069176,0.0026449644,38,0.0,0.0003989822,0.0068493151,0.0061538462,0.00153125,0.0010443864,0.0083655084,0.0852017937,0.0,0.1301947915
1.4.2.12.7-16,DPT20030,"DPT /Zone B (Middle Section) - Grouting to the western side of double pipe trench",7112,"CCGTD1_IPS",TT_Task,"58722",-,-,-,100,TK_Complete,03/10/2017,02/10/2017,06/11/2017,07/02/2018,"DPT20010 FF","DPT20010","SFF_BA58a FS","SFF_BA58a",113,150,118,168,26,35,27,39,12,,"CCGT D1_Integrated Programme Schedule;CIVILS;CONSTRUCTION;Cooling Water System;Double Pipe Trench",1,1,0.0,0.0002034588,0.0028484232,34,0.0,0.0002706856,0.0068493151,0.0030769231,0.0,0.0005221932,0.009009009,0.0762331839,0.0,0.077625501
1.4.2.12.7-17,DPT10100,"DPT /Zone A (Southern Section) - Cast base slab",7112,"CCGTD1_IPS",TT_Task,"58722",-,-,-,100,TK_Complete,26/11/2018,15/10/2018,04/12/2018,08/11/2018,"DPT10090 FF","DPT10090","DPT10110 FF","DPT10110",173,204,174,207,40,47,40,48,39,,"CCGT D1_Integrated Programme Schedule;CIVILS;CONSTRUCTION;Cooling Water System;Double Pipe Trench",1,1,0.000046952,0.0077314344,0.0065106816,8,0.0,0.0005122942,0.0068493151,0.0030769231,0.070875,0.019843342,0.0205920206,0.0179372197,0.0,0.1766241818
1.4.2.12.7-18,DPT10110,"DPT /Zone A (Southern Section) - Remove 2nd layer of struts",7112,"CCGTD1_IPS",TT_Task,"58722",-,-,-,100,TK_Complete,01/12/2018,25/10/2018,10/12/2018,16/11/2018,"DPT10100 FF,RWPR0060 FF","DPT10100,RWPR0060","DPT10120 FS,RWPR0080 FF","DPT10120,RWPR0080",174,205,175,209,40,48,41,48,41,,"CCGT D1_Integrated Programme Schedule;CIVILS;CONSTRUCTION;Cooling Water System;Double Pipe Trench",2,2,0.0000578827,0.0075279756,0.009155646,9,0.0,0.00058969,0.0136986301,0.0061538462,0.087375,0.0193211488,0.028957529,0.0201793722,0.0,0.2083369459
1.4.2.12.7-19,DPT10120,"DPT /Zone A (Southern Section) - Install Cooling Water Pipe (39 nos.)",7112,"CCGTD1_IPS",TT_Task,"58722",-,-,-,100,TK_Complete,26/11/2018,03/11/2018,22/12/2018,31/12/2018,"DPT10110 FS,PROMA010 FS,PROSC051 FS","DPT10110,PROMA010,PROSC051","DPT10125XX FS","DPT10125XX",173,207,177,215,40,48,41,50,39,,"CCGT D1_Integrated Programme Schedule;CIVILS;CONSTRUCTION;Cooling Water System;Double Pipe Trench",3,1,0.000003823,0.0004069176,0.0099694812,26,0.0,0.0006234273,0.0205479452,0.0030769231,0.0057708333,0.0010443864,0.0315315315,0.0582959641,0.0,0.2221607617
1.4.2.12.7-20,DPT10130,"DPT /Zone A (Southern Section) - Backfill to 0.5m below 1st layer of struts",7112,"CCGTD1_IPS",TT_Task,"58722",-,-,-,100,TK_Complete,23/02/2019,17/12/2018,28/02/2019,22/12/2018,"DPT10135 FS","DPT10135","DPT10140 FF","DPT10140",186,213,187,214,43,49,43,49,47,,"CCGT D1_Integrated Programme Schedule;CIVILS;CONSTRUCTION;Cooling Water System;Double Pipe Trench",1,1,0.0000007039,0.0034587996,0.011190234,5,1.0,0.000205172,0.0068493151,0.0030769231,0.0010625,0.0088772846,0.0353925354,0.0112107623,1.0,0.0507814178
1.4.2.12.7-21,DPT10140,"DPT /Zone A (Southern Section) - Remove 1st layer of struts",7112,"CCGTD1_IPS",TT_Task,"58722",-,-,-,100,TK_Complete,18/02/2019,28/12/2018,02/03/2019,31/12/2018,"DPT10130 FF,RWPR0180 FS","DPT10130,RWPR0180","DPT10150 FF,GNTX0010 FS,RWPR0120 FS","DPT10150,GNTX0010,RWPR0120",185,215,187,215,43,50,43,50,47,,"CCGT D1_Integrated Programme Schedule;CIVILS;CONSTRUCTION;Cooling Water System;Double Pipe Trench",2,3,0.0000289827,0.0032553408,0.0118006104,12,1.0,0.0004121415,0.0136986301,0.0092307692,0.04375,0.0083550914,0.0373230373,0.0269058296,1.0,0.1355867873
1.4.2.12.7-22,DPT10150,"DPT /Zone A (Southern Section) - Trim down sheet pile 2m",7112,"CCGTD1_IPS",TT_Task,"58722",-,-,-,100,TK_Complete,01/03/2019,30/12/2018,07/03/2019,02/01/2019,"DPT10140 FF,EV039020 FS","DPT10140,EV039020","DPT10160 FF","DPT10160",187,215,188,215,43,50,43,50,48,,"CCGT D1_Integrated Programme Schedule;CIVILS;CONSTRUCTION;Cooling Water System;Double Pipe Trench",2,1,0.0000089432,0.0008138352,0.012207528,6,1.0,0.0002673798,0.0136986301,0.0030769231,0.0135,0.0020887728,0.0386100386,0.0134529148,1.0,0.0762709486
1.4.2.12.7-23,DPT10160,"DPT /Zone A (Southern Section) - Backfill and form slope to the formation of Generator Transformer",7112,"CCGTD1_IPS",TT_Task,"58722",-,-,-,100,TK_Complete,11/03/2019,28/12/2018,11/03/2019,02/01/2019,"DPT10150 FF","DPT10150","PR010010 FS","PR010010",188,215,188,215,44,50,44,50,48,,"CCGT D1_Integrated Programme Schedule;CIVILS;CONSTRUCTION;Cooling Water System;Double Pipe Trench",1,1,0.0000065832,0.0006103764,0.0124109868,0,0.2,0.0000812387,0.0068493151,0.0030769231,0.0099375,0.0015665796,0.0392535393,0.0,0.2,0.0
1.4.2.12.7-24,DPT20130XX,"DPT /Zone B (Middle Section) - Testing to Cooling Water Pipe (TBC)",7112,"CCGTD1_IPS",TT_Task,"58722",-,-,-,100,TK_Complete,01/01/2020,03/04/2019,11/01/2020,03/04/2019,"DPT20168 FS,DPT20162 FS,DPT20164 FS,DPT20166 FS","DPT20168,DPT20162,DPT20164,DPT20166","CW1.2 FF","CW1.2",231,228,232,228,53,53,54,53,86,,"CCGT D1_Integrated Programme Schedule;CIVILS;CONSTRUCTION;Cooling Water System;Double Pipe Trench",4,1,0.0000007039,0.0002034588,0.0034587996,10,1.0,0.0007646535,0.0273972603,0.0030769231,0.0010625,0.0005221932,0.0109395109,0.0224215247,1.0,0.2800278945
1.4.2.12.7-25,DPT30010,"DPT /Zone C (Northern Section) - Pipe Piles adjoining Shaft F (13 nos)",7112,"CCGTD1_IPS",TT_Task,"58722",-,-,-,100,TK_Complete,23/04/2018,03/03/2018,05/05/2018,13/03/2018,"SFF10020 FS","SFF10020","SFF10030 FF,DPT30015 FS","SFF10030,DPT30015",142,172,144,173,33,40,33,40,25,,"CCGT D1_Integrated Programme Schedule;CIVILS;CONSTRUCTION;Cooling Water System;Double Pipe Trench",1,2,0.0000105994,0.0075279756,0.002034588,12,1.0,0.000122235,0.0068493151,0.0061538462,0.016,0.0193211488,0.0064350064,0.0269058296,1.0,0.0167981472
1.4.2.12.7-26,DPT30040,"DPT /Zone C (Northern Section) - Pumping Test and Report Submission",7112,"CCGTD1_IPS",TT_Task,"58722",-,-,-,100,TK_Complete,02/05/2019,26/04/2019,22/05/2019,03/07/2019,"DPT30030 FS,DPT30035 FS,EV045010 FS","DPT30030,DPT30035,EV045010","DPT30045 FF,DPT30082 FS","DPT30045,DPT30082",196,232,199,241,45,54,46,56,57,,"CCGT D1_Integrated Programme Schedule;CIVILS;CONSTRUCTION;Cooling Water System;Double Pipe Trench",3,2,0.0000184661,0.0048830112,0.004069176,20,0.0,0.0006158957,0.0205479452,0.0061538462,0.027875,0.0125326371,0.0128700129,0.0448430493,0.0,0.2190746773
1.4.2.12.7-27,DPT30030,"DPT /Zone C (Northern Section) - Grout Curtain East",7112,"CCGTD1_IPS",TT_Task,"58722",-,-,-,100,TK_Complete,26/05/2018,27/04/2018,30/06/2018,07/06/2018,"DPT30015 FS","DPT30015","DPT30040 FS","DPT30040",147,180,152,185,34,42,35,43,28,,"CCGT D1_Integrated Programme Schedule;CIVILS;CONSTRUCTION;Cooling Water System;Double Pipe Trench",1,1,0.0000110134,0.00508647,0.0024415056,35,0.4,0.0001358102,0.0068493151,0.0030769231,0.016625,0.0130548303,0.0077220077,0.0784753363,0.4,0.0223605721
1.4.2.12.7-28,DPT30090,"DPT /Zone C (Northern Section) - Excavation to formation level",7112,"CCGTD1_IPS",TT_Task,"58722",-,-,-,100,TK_Complete,04/11/2019,04/09/2019,10/11/2019,12/09/2019,"DPT30088 FS","DPT30088","DPT30100 FS","DPT30100",222,250,223,251,51,58,52,58,81,,"CCGT D1_Integrated Programme Schedule;CIVILS;CONSTRUCTION;Cooling Water System;Double Pipe Trench",1,1,0.0000216956,0.0036622584,0.0063072228,6,1.0,0.0006882043,0.0068493151,0.0030769231,0.03275,0.0093994778,0.0199485199,0.0134529148,1.0,0.2487029973
1.4.2.12.7-29,DPT30100,"DPT /Zone C (Northern Section) - Plate load test x2 sets",7112,"CCGTD1_IPS",TT_Task,"58722",-,-,-,100,TK_Complete,01/11/2019,13/09/2019,06/11/2019,16/09/2019,"DPT30090 FS","DPT30090","DPT40010 FS,DPT30120 FS","DPT40010,DPT30120",222,252,223,252,51,58,52,58,81,,"CCGT D1_Integrated Programme Schedule;CIVILS;CONSTRUCTION;Cooling Water System;Double Pipe Trench",1,2,0.000021116,0.0034587996,0.0065106816,5,1.0,0.0006722041,0.0068493151,0.0061538462,0.031875,0.0088772846,0.0205920206,0.0112107623,1.0,0.2421469346
1.4.2.12.7-30,DPT30120,"DPT /Zone C (Northern Section) - Install Cooling Water Pipe",7112,"CCGTD1_IPS",TT_Task,"58722",-,-,-,100,TK_Complete,17/09/2019,24/08/2019,05/10/2019,15/10/2019,"DPT30100 FS,PROSC051 FS","DPT30100,PROSC051","DPT30140 FS,DPT40020 FF,DPT30125XX FS","DPT30140,DPT40020,DPT30125XX",215,249,218,256,50,58,50,59,77,,"CCGT D1_Integrated Programme Schedule;CIVILS;CONSTRUCTION;Cooling Water System;Double Pipe Trench",2,3,0.0000130077,0.0024415056,0.0069175992,18,0.0,0.0002576563,0.0136986301,0.0092307692,0.0196354167,0.0062663185,0.0218790219,0.0403587444,0.0,0.0722867872
1.4.2.12.7-31,DPT30210,"DPT /Zone C (Northern Section) - Backfill and reinstate to ground level",7112,"CCGTD1_IPS",TT_Task,"58722",-,-,-,100,TK_Complete,20/01/2020,20/01/2020,05/02/2020,05/02/2020,"DPT30200 FS,DPT40020 FS","DPT30200,DPT40020","SW1.1 FF","SW1.1",233,270,236,272,54,63,55,63,88,,"CCGT D1_Integrated Programme Schedule;CIVILS;CONSTRUCTION;Cooling Water System;Double Pipe Trench",2,1,0.0000010558,0.0002034588,0.0103763988,16,1.0,0.000474032,0.0136986301,0.0030769231,0.00159375,0.0005221932,0.0328185328,0.0358744395,1.0,0.1609462935
1.4.2.12.7-32,DPT30200,"DPT /Zone C (Northern Section) - Trim top 2m pipe piles",7112,"CCGTD1_IPS",TT_Task,"58722",-,-,-,100,TK_Complete,13/01/2020,13/01/2020,18/01/2020,18/01/2020,"DPT30125XX FS","DPT30125XX","DPT30210 FS","DPT30210",232,269,233,270,54,62,54,63,88,,"CCGT D1_Integrated Programme Schedule;CIVILS;CONSTRUCTION;Cooling Water System;Double Pipe Trench",1,1,0.0000000414,0.0004069176,0.0073245168,5,1.0,0.0001059377,0.0068493151,0.0030769231,0.0000625,0.0010443864,0.0231660232,0.0112107623,1.0,0.0101203419
1.4.2.12.7-33,DPT40030,"DPT /Seal Pit - Construct balance of structure in Shaft F / Zone C",7112,"CCGTD1_IPS",TT_Task,"58722",-,-,-,100,TK_Complete,01/01/2020,07/12/2019,21/01/2020,07/12/2019,"SFF30262 FS","SFF30262","DPT30150 FS,SFF30264 SS,DPT30140 SS,SFF30330 FS","DPT30150,SFF30264,DPT30140,SFF30330",231,264,233,264,53,61,54,61,86,,"CCGT D1_Integrated Programme Schedule;CIVILS;CONSTRUCTION;Cooling Water System;Double Pipe Trench",1,4,0.0000502436,0.002034588,0.0366225839,20,1.0,0.0009355394,0.0068493151,0.0123076923,0.07584375,0.0052219321,0.1158301158,0.0448430493,1.0,0.3500480626
1.4.2.12.7-34,DPT40020,"DPT /Seal Pit - Connect CW pipes to the discharge line at Zone C",7112,"CCGTD1_IPS",TT_Task,"58722",-,-,-,100,TK_Complete,01/01/2020,26/11/2019,06/01/2020,26/11/2019,"DPT30120 FF,DPT30125XX FS,DPT40010 FF","DPT30120,DPT30125XX,DPT40010","DPT30210 FS,CW1.2 FF","DPT30210,CW1.2",231,262,231,262,53,61,54,61,86,,"CCGT D1_Integrated Programme Schedule;CIVILS;CONSTRUCTION;Cooling Water System;Double Pipe Trench",3,2,0.000003678,0.0006103764,0.0099694812,5,1.0,0.0003583461,0.0205479452,0.0061538462,0.0055520833,0.0015665796,0.0315315315,0.0112107623,1.0,0.1135442322
1.4.2.12.7-35,DPT30130,"DPT /Zone C (Northern Section) - Break Shaft F pipe pile wall at the supply pipeline interface",7112,"CCGTD1_IPS",TT_Task,"58722",-,-,-,100,TK_Complete,01/01/2020,14/12/2019,03/01/2020,16/12/2019,"DPT30125XX FS","DPT30125XX","SFF30264 FF","SFF30264",231,265,231,265,53,61,53,61,86,,"CCGT D1_Integrated Programme Schedule;CIVILS;CONSTRUCTION;Cooling Water System;Double Pipe Trench",1,1,0.0,0.0014242116,0.0073245168,2,1.0,0.0000911183,0.0068493151,0.0030769231,0.0,0.0036553525,0.0231660232,0.0044843049,1.0,0.0040481367
1.4.2.12.7-36,DPT30140,"DPT /Zone C (Northern Section) - Connect CW supply pipeline to Shaft F",7112,"CCGTD1_IPS",TT_Task,"58722",-,-,-,100,TK_Complete,13/01/2020,07/12/2019,15/01/2020,23/12/2019,"DPT30120 FS,SFF30264 FF,DPT40030 SS","DPT30120,SFF30264,DPT40030","SFF30290 FS,CW1.2 FF","SFF30290,CW1.2",232,264,233,266,54,61,54,62,88,,"CCGT D1_Integrated Programme Schedule;CIVILS;CONSTRUCTION;Cooling Water System;Double Pipe Trench",3,2,0.000032371,0.001017294,0.0441505595,2,0.0,0.000418095,0.0205479452,0.0061538462,0.0488645833,0.0026109661,0.1396396396,0.0044843049,0.0,0.1380262054
1.4.2.12.7-37,DPT10125XX,"DPT /Zone A (Southern Section) - Testing to Cooling Water Pipe (TBC)",7112,"CCGTD1_IPS",TT_Task,"58722",-,-,-,100,TK_Complete,01/01/2020,01/01/2019,10/01/2020,01/01/2019,"DPT10120 FS","DPT10120","CW1.2 FF","CW1.2",231,215,232,215,53,50,54,50,86,,"CCGT D1_Integrated Programme Schedule;CIVILS;CONSTRUCTION;Cooling Water System;Double Pipe Trench",1,1,0.0000018356,0.0002034588,0.01017294,9,1.0,0.0006174804,0.0068493151,0.0030769231,0.0027708333,0.0005221932,0.0321750322,0.0201793722,1.0,0.2197240053
1.4.2.12.7-38,DPT30125XX,"DPT /Zone C (Northern Section) - Testing to Cooling Water Pipe",7112,"CCGTD1_IPS",TT_Task,"58722",-,-,-,100,TK_Complete,01/01/2020,16/10/2019,01/01/2020,16/10/2019,"DPT30120 FS","DPT30120","DPT30130 FS,DPT40020 FS,DPT30200 FS,SFF30264 FS","DPT30130,DPT40020,DPT30200,SFF30264",231,256,231,256,53,59,53,59,86,,"CCGT D1_Integrated Programme Schedule;CIVILS;CONSTRUCTION;Cooling Water System;Double Pipe Trench",1,4,0.0000042232,0.0022380468,0.007121058,0,1.0,0.0000812387,0.0068493151,0.0123076923,0.006375,0.0057441253,0.0225225225,0.0,1.0,0.0
1.4.2.12.7-39,DPT10045,"DPT /Zone A (Southern Section) - BD Consent for Commencement of Excavation & ELS",7112,"CCGTD1_IPS",TT_Task,"58722",-,-,-,100,TK_Complete,18/06/2018,18/05/2018,15/07/2018,22/06/2018,"DPT10040 FS","DPT10040","DPT10070 FS,DPT10050 FS","DPT10070,DPT10050",150,183,154,188,35,42,36,43,30,,"CCGT D1_Integrated Programme Schedule;CIVILS;CONSTRUCTION;Cooling Water System;Double Pipe Trench",1,2,0.0000221097,0.0089521872,0.0028484232,27,0.4,0.0002287658,0.0068493151,0.0061538462,0.033375,0.0229765013,0.009009009,0.0605381166,0.4,0.0604489457
1.4.2.12.7-40,DPT30045,"DPT /Zone C (Northern Section) - BD Consent for Commencement of Excavation & ELS",7112,"CCGTD1_IPS",TT_Task,"58722",-,-,-,100,TK_Complete,21/08/2019,25/06/2019,17/09/2019,22/07/2019,"DPT30040 FF","DPT30040","DPT30086 FS","DPT30086",212,240,215,244,49,56,50,57,70,,"CCGT D1_Integrated Programme Schedule;CIVILS;CONSTRUCTION;Cooling Water System;Double Pipe Trench",1,1,0.0000168514,0.0042726348,0.0042726348,27,1.0,0.0004353259,0.0068493151,0.0030769231,0.0254375,0.0109660574,0.0135135135,0.0605381166,1.0,0.1450865345
1.4.2.12.7-41,EV012100,"Event 012ZA - Settlement Assessment - BD monitoring team visit to site",7112,"CCGTD1_IPS",TT_FinMile,"58722",-,-,-,100,TK_Complete,23/04/2018,01/03/2018,23/04/2018,01/03/2018,"","","EV012110 FS","EV012110",142,171,142,171,33,40,33,40,25,,"CCGT D1_Integrated Programme Schedule;CIVILS;CONSTRUCTION;Cooling Water System;Double Pipe Trench",0,1,0.0,0.0095625636,0.0,0,1.0,0.0000812387,0.0,0.0030769231,0.0,0.0245430809,0.0,0.0,1.0,0.0
1.4.2.12.7-42,EV012110,"Event 012ZA - Settlement Assessment - Report preparation and submission to BD",7112,"CCGTD1_IPS",TT_Task,"58722",-,-,-,100,TK_Complete,23/04/2018,05/03/2018,28/04/2018,17/05/2018,"EV012100 FS","EV012100","EV012120 SS","EV012120",142,172,143,182,33,40,33,42,25,,"CCGT D1_Integrated Programme Schedule;CIVILS;CONSTRUCTION;Cooling Water System;Double Pipe Trench",1,1,0.0000019046,0.0093591048,0.0002034588,5,0.0,0.0001503957,0.0068493151,0.0030769231,0.002875,0.0240208877,0.0006435006,0.0112107623,0.0,0.0283369572
1.4.2.12.7-43,EV012120,"Event 012ZA - Settlement Assessment - Report review and comment by BD",7112,"CCGTD1_IPS",TT_Task,"58722",-,-,-,100,TK_Complete,29/04/2018,16/03/2018,12/05/2018,22/06/2018,"EV012110 SS","EV012110","EV012130 FF","EV012130",143,174,145,188,33,40,33,43,26,,"CCGT D1_Integrated Programme Schedule;CIVILS;CONSTRUCTION;Cooling Water System;Double Pipe Trench",1,1,0.0000037264,0.009155646,0.0004069176,13,0.0,0.000209244,0.0068493151,0.0030769231,0.005625,0.0234986945,0.0012870013,0.0291479821,0.0,0.0524499399
1.4.2.12.7-44,EV012150,"Event 012ZA - Settlement Assessment -  Post remedial grouting to Transformer Rd (36 nos. +4 SPT)",7112,"CCGTD1_IPS",TT_Task,"58722",-,-,-,100,TK_Complete,05/05/2018,19/03/2018,25/05/2018,04/04/2018,"EV012140 FS","EV012140","EV012160 FS","EV012160",144,174,147,176,33,40,34,41,27,,"CCGT D1_Integrated Programme Schedule;CIVILS;CONSTRUCTION;Cooling Water System;Double Pipe Trench",1,1,0.0000020702,0.01017294,0.0002034588,20,1.0,0.0001503957,0.0068493151,0.0030769231,0.003125,0.0261096606,0.0006435006,0.0448430493,1.0,0.0283369572
1.4.2.12.7-45,EV012140,"Event 012ZA - Request and Issue of ROI for ""Post Grouting to Transformer Rd"" and other precautionary measures",7112,"CCGTD1_IPS",TT_Task,"58722",-,-,-,100,TK_Complete,29/04/2018,08/03/2018,03/05/2018,18/03/2018,"","","EV012150 FS","EV012150",143,172,144,174,33,40,33,40,26,,"CCGT D1_Integrated Programme Schedule;CIVILS;CONSTRUCTION;Cooling Water System;Double Pipe Trench",0,1,0.0,0.0103763988,0.0,4,0.4,0.0000812387,0.0,0.0030769231,0.0,0.0266318538,0.0,0.0089686099,0.4,0.0
1.4.2.12.7-46,EV012130,"Event 012ZA - Settlement Assessment - BD accept the report and resume to handle BA8 consent application",7112,"CCGTD1_IPS",TT_FinMile,"58722",-,-,-,100,TK_Complete,17/07/2018,22/06/2018,17/07/2018,22/06/2018,"EV012120 FF,EV012200 FF","EV012120,EV012200","EV019020 FF,DPT10050 FS","EV019020,DPT10050",154,188,154,188,36,43,36,43,32,,"CCGT D1_Integrated Programme Schedule;CIVILS;CONSTRUCTION;Cooling Water System;Double Pipe Trench",2,1,0.0000182177,0.0089521872,0.002034588,0,1.0,0.0000812387,0.0136986301,0.0030769231,0.0275,0.0229765013,0.0064350064,0.0,1.0,0.0
1.4.2.12.7-47,DPT30015,"DPT /Zone C (Northern Section) - Remaining Eastern Pipe Pile (60 nos)",7112,"CCGTD1_IPS",TT_Task,"58722",-,-,-,100,TK_Complete,07/05/2018,14/03/2018,25/06/2018,02/05/2018,"DPT30010 FS","DPT30010","DPT30020 FF,DPT30030 FS","DPT30020,DPT30030",144,173,151,180,33,40,35,42,27,,"CCGT D1_Integrated Programme Schedule;CIVILS;CONSTRUCTION;Cooling Water System;Double Pipe Trench",1,2,0.0000113447,0.0056968464,0.0022380468,49,1.0,0.0001391883,0.0068493151,0.0061538462,0.017125,0.0146214099,0.0070785071,0.1098654709,1.0,0.0237447201
1.4.2.12.7-48,DPT30035,"DPT /Zone C (Northern Section) - Grout Curtain West",7112,"CCGTD1_IPS",TT_Task,"58722",-,-,-,100,TK_Complete,16/06/2018,27/04/2018,19/07/2018,07/06/2018,"DPT30020 FS","DPT30020","DPT30040 FS","DPT30040",150,180,155,185,35,42,36,43,30,,"CCGT D1_Integrated Programme Schedule;CIVILS;CONSTRUCTION;Cooling Water System;Double Pipe Trench",1,1,0.0000010351,0.00508647,0.0026449644,33,0.2,0.0002048296,0.0068493151,0.0030769231,0.0015625,0.0130548303,0.0083655084,0.0739910314,0.2,0.0506411466
1.4.2.12.7-49,DPT30020,"DPT /Zone C (Northern Section) - Remaining Western Pipe Pile (50 nos)",7112,"CCGTD1_IPS",TT_Task,"58722",-,-,-,100,TK_Complete,13/06/2018,07/04/2018,24/07/2018,28/04/2018,"DPT30015 FF","DPT30015","DPT30035 FS","DPT30035",150,177,155,180,35,41,36,42,30,,"CCGT D1_Integrated Programme Schedule;CIVILS;CONSTRUCTION;Cooling Water System;Double Pipe Trench",1,1,0.0000004968,0.0052899288,0.0024415056,41,1.0,0.0001451653,0.0068493151,0.0030769231,0.00075,0.0135770235,0.0077220077,0.0919282511,1.0,0.0261938131
1.4.2.12.7-50,EV012160,"Event 012ZA - Settlement Assessment -  Instruction of additional remedial grouting (24 nos. - ROI #72)",7112,"CCGTD1_IPS",TT_Task,"58722",-,-,-,100,TK_Complete,05/05/2018,05/04/2018,10/05/2018,11/04/2018,"EV012150 FS","EV012150","EV012170 FS","EV012170",144,176,145,177,33,41,33,41,27,,"CCGT D1_Integrated Programme Schedule;CIVILS;CONSTRUCTION;Cooling Water System;Double Pipe Trench",1,1,0.0000040576,0.0099694812,0.0004069176,5,1.0,0.000209244,0.0068493151,0.0030769231,0.006125,0.0255874674,0.0012870013,0.0112107623,1.0,0.0524499399
1.4.2.12.7-51,EV012170,"Event 012ZA - Settlement Assessment - Post remedial grouting to Transformer Rd (24 nos.)",7112,"CCGTD1_IPS",TT_Task,"58722",-,-,-,100,TK_Complete,05/05/2018,12/04/2018,16/05/2018,23/04/2018,"EV012160 FS","EV012160","EV012180 FS","EV012180",144,177,146,179,33,41,34,41,27,,"CCGT D1_Integrated Programme Schedule;CIVILS;CONSTRUCTION;Cooling Water System;Double Pipe Trench",1,1,0.0000059622,0.0097660224,0.0006103764,11,1.0,0.0002593786,0.0068493151,0.0030769231,0.009,0.0250652742,0.0019305019,0.0246636771,1.0,0.0729924654
1.4.2.12.7-52,EV012180,"Event 012ZA - Settlement Assessment - Awaiting confirmation on locations of 2 nos,. additional SPT",7112,"CCGTD1_IPS",TT_Task,"58722",-,-,-,100,TK_Complete,27/05/2018,24/04/2018,01/06/2018,25/04/2018,"EV012170 FS","EV012170","EV012190 FS","EV012190",147,179,148,179,34,41,34,41,29,,"CCGT D1_Integrated Programme Schedule;CIVILS;CONSTRUCTION;Cooling Water System;Double Pipe Trench",1,1,0.0000077839,0.0095625636,0.0008138352,5,1.0,0.0003021254,0.0068493151,0.0030769231,0.01175,0.0245430809,0.0025740026,0.0112107623,1.0,0.0905078876
1.4.2.12.7-53,EV012190,"Event 012ZA - Settlement Assessment - 2 nos. additional SPT",7112,"CCGTD1_IPS",TT_Task,"58722",-,-,-,100,TK_Complete,02/06/2018,26/04/2018,08/06/2018,05/05/2018,"EV012180 FS","EV012180","EV012200 FS","EV012200",148,179,149,181,34,41,34,42,29,,"CCGT D1_Integrated Programme Schedule;CIVILS;CONSTRUCTION;Cooling Water System;Double Pipe Trench",1,1,0.0000095229,0.0093591048,0.001017294,6,0.8,0.000338598,0.0068493151,0.0030769231,0.014375,0.0240208877,0.0032175032,0.0134529148,0.8,0.1054524737
1.4.2.12.7-54,EV012200,"Event 012ZA - Settlement Assessment - Preparation and submission of supplementary information",7112,"CCGTD1_IPS",TT_Task,"58722",-,-,-,100,TK_Complete,26/05/2018,06/05/2018,08/06/2018,17/05/2018,"EV012190 FS","EV012190","EV012130 FF","EV012130",147,181,149,182,34,42,34,42,28,,"CCGT D1_Integrated Programme Schedule;CIVILS;CONSTRUCTION;Cooling Water System;Double Pipe Trench",1,1,0.0000111791,0.009155646,0.0012207528,13,1.0,0.0003696143,0.0068493151,0.0030769231,0.016875,0.0234986945,0.0038610039,0.0291479821,1.0,0.1181613545
1.4.2.12.7-55,EV020020,"Event 020 - Crane Access to Gas Filer across Zone B for M&E (KSS) - Access Date",7112,"CCGTD1_IPS",TT_Mile,"58722",-,-,-,100,TK_Complete,26/11/2018,03/09/2018,26/11/2018,03/09/2018,"","","EV020010 SF","EV020010",173,198,173,198,40,46,40,46,39,,"CCGT D1_Integrated Programme Schedule;CIVILS;CONSTRUCTION;Cooling Water System;Double Pipe Trench",0,0,0.0,0.0,0.0,0,1.0,0.0000812387,0.0,0.0,0.0,0.0,0.0,0.0,1.0,0.0
1.4.2.12.7-56,EV021810,"Event 021(ZA) - AAA amendment for Zone A {4b1-alt A-2} [WITHDRAWN]",7112,"CCGTD1_IPS",TT_Task,"58722",-,-,-,100,TK_Complete,26/05/2018,16/03/2018,24/06/2018,04/04/2018,"","","","",147,174,151,176,34,40,35,41,28,,"CCGT D1_Integrated Programme Schedule;CIVILS;CONSTRUCTION;Cooling Water System;Double Pipe Trench",0,0,0.0,0.0,0.0,29,1.0,0.0000812387,0.0,0.0,0.0,0.0,0.0,0.0650224215,1.0,0.0
1.4.2.12.7-57,EV021820,"Event 021(ZA) - AAA amendment for Zone A {4b1-alt A-2(r1)} [WITHDRAWN]",7112,"CCGTD1_IPS",TT_Task,"58722",-,-,-,100,TK_Complete,26/05/2018,24/04/2018,24/06/2018,18/05/2018,"","","","",147,179,151,183,34,41,35,42,28,,"CCGT D1_Integrated Programme Schedule;CIVILS;CONSTRUCTION;Cooling Water System;Double Pipe Trench",0,0,0.0,0.0,0.0,29,1.0,0.0000812387,0.0,0.0,0.0,0.0,0.0,0.0650224215,1.0,0.0
1.4.2.12.7-58,EV021830,"Event 021(ZA) - AAA amendment for Zone A {4b1-alt A-2(r2)}",7112,"CCGTD1_IPS",TT_Task,"58722",-,-,-,100,TK_Complete,26/05/2018,18/05/2018,24/06/2018,22/06/2018,"","","DPT10050 FS","DPT10050",147,183,151,188,34,42,35,43,28,,"CCGT D1_Integrated Programme Schedule;CIVILS;CONSTRUCTION;Cooling Water System;Double Pipe Trench",0,1,0.0,0.0089521872,0.0,29,0.2,0.0000812387,0.0,0.0030769231,0.0,0.0229765013,0.0,0.0650224215,0.2,0.0
1.4.2.12.7-59,DPT10135,"DPT /Zone A (Southern Section) - Concrete surround",7112,"CCGTD1_IPS",TT_Task,"58722",-,-,-,100,TK_Complete,02/02/2019,01/12/2018,22/02/2019,15/12/2018,"EV048010 FF","EV048010","DPT10130 FS","DPT10130",183,211,186,213,42,49,43,49,46,,"CCGT D1_Integrated Programme Schedule;CIVILS;CONSTRUCTION;Cooling Water System;Double Pipe Trench",1,1,0.0000022358,0.0036622584,0.0109867752,20,1.0,0.0001455796,0.0068493151,0.0030769231,0.003375,0.0093994778,0.0347490347,0.0448430493,1.0,0.026363566
1.4.2.12.7-60,DPT30150,"DPT /Seal Pit - Stitch connection of Seal Pit between Shaft F and Zone C",7112,"CCGTD1_IPS",TT_Task,"58722",-,-,-,100,TK_Complete,24/02/2020,08/12/2019,06/03/2020,22/12/2019,"DPT40030 FS,DPT40010 FF","DPT40030,DPT40010","CW1.2 FF","CW1.2",238,264,240,266,55,61,56,62,89,,"CCGT D1_Integrated Programme Schedule;CIVILS;CONSTRUCTION;Cooling Water System;Double Pipe Trench",2,1,0.0000022151,0.0002034588,0.0425228891,11,0.2,0.0004995533,0.0136986301,0.0030769231,0.00334375,0.0005221932,0.1344916345,0.0246636771,0.2,0.1714035977
1.4.2.12.7-61,EV045010,"Event 045 - Shaft F / Zone C Re-sequencing - Additional TAM grout",7112,"CCGTD1_IPS",TT_Task,"58722",-,-,-,100,TK_Complete,01/04/2019,23/03/2019,13/04/2019,01/04/2019,"SFF-BA58d FS","SFF-BA58d","DPT30040 FS","DPT30040",191,227,193,228,44,53,45,53,51,,"CCGT D1_Integrated Programme Schedule;CIVILS;CONSTRUCTION;Cooling Water System;Double Pipe Trench",1,1,0.0000041404,0.00508647,0.0008138352,12,1.0,0.0002872404,0.0068493151,0.0030769231,0.00625,0.0130548303,0.0025740026,0.0269058296,1.0,0.0844087847
1.4.2.12.7-62,DPT20092,"DPT/ Zone B Central - Open cut excavation",7112,"CCGTD1_IPS",TT_Task,"58722",-,-,-,100,TK_Complete,26/01/2019,29/11/2018,14/02/2019,18/12/2018,"","","DPT20090 SS,DPT20090 FF,DPT20102 FS","DPT20090,DPT20090,DPT20102",182,210,185,213,42,49,43,49,44,,"CCGT D1_Integrated Programme Schedule;CIVILS;CONSTRUCTION;Cooling Water System;Double Pipe Trench",0,1,0.0,0.001017294,0.0,19,1.0,0.0000812387,0.0,0.0030769231,0.0,0.0026109661,0.0,0.0426008969,1.0,0.0
1.4.2.12.7-63,DPT20094,"DPT/ Zone B South (i.e. Zone A Interface) - Open cut excavation",7112,"CCGTD1_IPS",TT_Task,"58722",-,-,-,100,TK_Complete,26/01/2019,31/12/2018,08/02/2019,12/01/2019,"","","DPT20090 SS,DPT20090 FF,DPT20104 FS","DPT20090,DPT20090,DPT20104",182,215,184,217,42,50,43,50,45,,"CCGT D1_Integrated Programme Schedule;CIVILS;CONSTRUCTION;Cooling Water System;Double Pipe Trench",0,1,0.0,0.001017294,0.0,13,1.0,0.0000812387,0.0,0.0030769231,0.0,0.0026109661,0.0,0.0291479821,1.0,0.0
1.4.2.12.7-64,DPT20096,"DPT/ Zone B North (i.e. KSS Interface) - Open cut excavation",7112,"CCGTD1_IPS",TT_Task,"58722",-,-,-,100,TK_Complete,26/01/2019,24/01/2019,06/02/2019,08/02/2019,"","","DPT20090 SS,DPT20090 FF,DPT20106 FS","DPT20090,DPT20090,DPT20106",182,218,184,221,42,51,42,51,45,,"CCGT D1_Integrated Programme Schedule;CIVILS;CONSTRUCTION;Cooling Water System;Double Pipe Trench",0,1,0.0,0.001017294,0.0,11,0.8,0.0000812387,0.0,0.0030769231,0.0,0.0026109661,0.0,0.0246636771,0.8,0.0
1.4.2.12.7-65,DPT20098,"DPT/ Zone B North (i.e. KSS Crane Access) - Open cut excavation",7112,"CCGTD1_IPS",TT_Task,"58722",-,-,-,100,TK_Complete,01/04/2019,09/03/2019,11/04/2019,11/03/2019,"EV020030 FS","EV020030","DPT20090 SS,DPT20090 FF,DPT20108 FS","DPT20090,DPT20090,DPT20108",191,225,193,225,44,52,45,52,51,,"CCGT D1_Integrated Programme Schedule;CIVILS;CONSTRUCTION;Cooling Water System;Double Pipe Trench",1,1,0.0000004968,0.0024415056,0.0002034588,10,1.0,0.0001503957,0.0068493151,0.0030769231,0.00075,0.0062663185,0.0006435006,0.0224215247,1.0,0.0283369572
1.4.2.12.7-66,EV020030,"Event 020 - KSS handover back the area",7112,"CCGTD1_IPS",TT_FinMile,"58722",-,-,-,100,TK_Complete,31/03/2019,08/03/2019,31/03/2019,08/03/2019,"","","DPT20098 FS","DPT20098",191,225,191,225,44,52,44,52,49,,"CCGT D1_Integrated Programme Schedule;CIVILS;CONSTRUCTION;Cooling Water System;Double Pipe Trench",0,1,0.0,0.0026449644,0.0,0,1.0,0.0000812387,0.0,0.0030769231,0.0,0.0067885117,0.0,0.0,1.0,0.0
1.4.2.12.7-67,DPT20102,"DPT/ Zone B Central - Base slab",7112,"CCGTD1_IPS",TT_Task,"58722",-,-,-,100,TK_Complete,26/01/2019,18/12/2018,31/01/2019,22/12/2018,"DPT20092 FS","DPT20092","DPT20100 SS,DPT20100 FF,DPT20122 FS","DPT20100,DPT20100,DPT20122",182,213,183,214,42,49,42,49,45,,"CCGT D1_Integrated Programme Schedule;CIVILS;CONSTRUCTION;Cooling Water System;Double Pipe Trench",1,1,0.0000001656,0.0008138352,0.0002034588,5,1.0,0.0001503957,0.0068493151,0.0030769231,0.00025,0.0020887728,0.0006435006,0.0112107623,1.0,0.0283369572
1.4.2.12.7-68,DPT20104,"DPT/ Zone B South (i.e. Zone A Interface) - Base slab",7112,"CCGTD1_IPS",TT_Task,"58722",-,-,-,100,TK_Complete,26/01/2019,13/01/2019,30/01/2019,17/01/2019,"DPT20094 FS","DPT20094","DPT20100 SS,DPT20100 FF,DPT20124 FS","DPT20100,DPT20100,DPT20124",182,217,183,217,42,50,42,50,45,,"CCGT D1_Integrated Programme Schedule;CIVILS;CONSTRUCTION;Cooling Water System;Double Pipe Trench",1,1,0.0000001656,0.0008138352,0.0002034588,4,1.0,0.0001503957,0.0068493151,0.0030769231,0.00025,0.0020887728,0.0006435006,0.0089686099,1.0,0.0283369572
1.4.2.12.7-69,DPT20106,"DPT/ Zone B North (i.e. KSS Interface) - Base slab",7112,"CCGTD1_IPS",TT_Task,"58722",-,-,-,100,TK_Complete,01/04/2019,09/02/2019,04/04/2019,12/02/2019,"DPT20096 FS","DPT20096","DPT20100 SS,DPT20100 FF,DPT20126 FS","DPT20100,DPT20100,DPT20126",191,221,192,221,44,51,44,51,51,,"CCGT D1_Integrated Programme Schedule;CIVILS;CONSTRUCTION;Cooling Water System;Double Pipe Trench",1,1,0.0000001656,0.0008138352,0.0002034588,3,1.0,0.0001503957,0.0068493151,0.0030769231,0.00025,0.0020887728,0.0006435006,0.0067264574,1.0,0.0283369572
1.4.2.12.7-70,DPT20108,"DPT/ Zone B North (i.e. KSS Crane Access) - Base slab",7112,"CCGTD1_IPS",TT_Task,"58722",-,-,-,100,TK_Complete,01/04/2019,13/03/2019,04/04/2019,15/03/2019,"DPT20098 FS","DPT20098","DPT20100 SS,DPT20100 FF,DPT20128 FS","DPT20100,DPT20100,DPT20128",191,225,192,226,44,52,44,52,51,,"CCGT D1_Integrated Programme Schedule;CIVILS;CONSTRUCTION;Cooling Water System;Double Pipe Trench",1,1,0.0000009109,0.0022380468,0.0004069176,3,1.0,0.000209244,0.0068493151,0.0030769231,0.001375,0.0057441253,0.0012870013,0.0067264574,1.0,0.0524499399
1.4.2.12.7-71,DPT20162,"DPT/ Zone B Central - Concrete surround & backfill",7112,"CCGTD1_IPS",TT_Task,"58722",-,-,-,100,TK_Complete,26/01/2019,07/01/2019,08/02/2019,19/01/2019,"DPT20122 FF","DPT20122","DPT20160 SS,DPT20160 FF,DPT20130XX FS","DPT20160,DPT20160,DPT20130XX",182,216,184,218,42,50,43,50,45,,"CCGT D1_Integrated Programme Schedule;CIVILS;CONSTRUCTION;Cooling Water System;Double Pipe Trench",1,1,0.0000002484,0.0004069176,0.0006103764,13,1.0,0.0002593786,0.0068493151,0.0030769231,0.000375,0.0010443864,0.0019305019,0.0291479821,1.0,0.0729924654
1.4.2.12.7-72,DPT20164,"DPT/ Zone B South (i.e. Zone A Interface) - Concrete surround & backfill",7112,"CCGTD1_IPS",TT_Task,"58722",-,-,-,100,TK_Complete,26/01/2019,17/01/2019,08/02/2019,30/01/2019,"DPT20124 FF","DPT20124","DPT20160 SS,DPT20160 FF,DPT20130XX FS","DPT20160,DPT20160,DPT20130XX",182,217,184,219,42,50,43,51,45,,"CCGT D1_Integrated Programme Schedule;CIVILS;CONSTRUCTION;Cooling Water System;Double Pipe Trench",1,1,0.0000002484,0.0004069176,0.0006103764,13,1.0,0.0002593786,0.0068493151,0.0030769231,0.000375,0.0010443864,0.0019305019,0.0291479821,1.0,0.0729924654
1.4.2.12.7-73,DPT20166,"DPT/ Zone B North (i.e. KSS Interface) - Concrete surround & backfill",7112,"CCGTD1_IPS",TT_Task,"58722",-,-,-,100,TK_Complete,02/04/2019,16/02/2019,17/04/2019,25/02/2019,"DPT20126 FS","DPT20126","DPT20160 SS,DPT20160 FF,DPT20130XX FS","DPT20160,DPT20160,DPT20130XX",191,222,194,223,44,51,45,52,52,,"CCGT D1_Integrated Programme Schedule;CIVILS;CONSTRUCTION;Cooling Water System;Double Pipe Trench",1,1,0.0000002484,0.0004069176,0.0006103764,15,1.0,0.0002593786,0.0068493151,0.0030769231,0.000375,0.0010443864,0.0019305019,0.033632287,1.0,0.0729924654
1.4.2.12.7-74,DPT20168,"DPT/ Zone B North (i.e. KSS Crane Access) - Concrete surround & backfill",7112,"CCGTD1_IPS",TT_Task,"58722",-,-,-,100,TK_Complete,06/04/2019,15/03/2019,27/04/2019,02/04/2019,"DPT20128 FS","DPT20128","DPT20160 SS,DPT20160 FF,DPT20130XX FS,GFFE0010 FS,EV041010 FF","DPT20160,DPT20160,DPT20130XX,GFFE0010,EV041010",192,226,195,228,44,52,45,53,53,,"CCGT D1_Integrated Programme Schedule;CIVILS;CONSTRUCTION;Cooling Water System;Double Pipe Trench",1,3,0.0000014905,0.0018311292,0.0008138352,21,1.0,0.0003021254,0.0068493151,0.0092307692,0.00225,0.0046997389,0.0025740026,0.0470852018,1.0,0.0905078876
1.4.2.12.7-75,DPT20122,"DPT/ Zone B Central - CW pipe installation",7112,"CCGTD1_IPS",TT_Task,"58722",-,-,-,100,TK_Complete,26/01/2019,24/12/2018,05/02/2019,03/01/2019,"DPT20102 FS","DPT20102","DPT20120 SS,DPT20120 FF,DPT20162 FF","DPT20120,DPT20120,DPT20162",182,214,183,215,42,50,42,50,45,,"CCGT D1_Integrated Programme Schedule;CIVILS;CONSTRUCTION;Cooling Water System;Double Pipe Trench",1,1,0.0000002484,0.0006103764,0.0004069176,10,1.0,0.000209244,0.0068493151,0.0030769231,0.000375,0.0015665796,0.0012870013,0.0224215247,1.0,0.0524499399
1.4.2.12.7-76,DPT20124,"DPT/ Zone B South (i.e. Zone A Interface) - CW pipe installation",7112,"CCGTD1_IPS",TT_Task,"58722",-,-,-,100,TK_Complete,26/01/2019,17/01/2019,01/02/2019,23/01/2019,"DPT20104 FS","DPT20104","DPT20120 SS,DPT20120 FF,DPT20164 FF","DPT20120,DPT20120,DPT20164",182,217,183,218,42,50,42,51,45,,"CCGT D1_Integrated Programme Schedule;CIVILS;CONSTRUCTION;Cooling Water System;Double Pipe Trench",1,1,0.0000002484,0.0006103764,0.0004069176,6,1.0,0.000209244,0.0068493151,0.0030769231,0.000375,0.0015665796,0.0012870013,0.0134529148,1.0,0.0524499399
1.4.2.12.7-77,DPT20126,"DPT/ Zone B North (i.e. KSS Interface) - CW pipe installation",7112,"CCGTD1_IPS",TT_Task,"58722",-,-,-,100,TK_Complete,31/03/2019,13/02/2019,01/04/2019,15/02/2019,"DPT20106 FS","DPT20106","DPT20120 SS,DPT20120 FF,DPT20166 FS","DPT20120,DPT20120,DPT20166",191,221,191,222,44,51,44,51,49,,"CCGT D1_Integrated Programme Schedule;CIVILS;CONSTRUCTION;Cooling Water System;Double Pipe Trench",1,1,0.0000002484,0.0006103764,0.0004069176,1,0.8,0.000209244,0.0068493151,0.0030769231,0.000375,0.0015665796,0.0012870013,0.0022421525,0.8,0.0524499399
1.4.2.12.7-78,DPT20128,"DPT/ Zone B North (i.e. KSS Crane Access) - CW pipe installation",7112,"CCGTD1_IPS",TT_Task,"58722",-,-,-,100,TK_Complete,31/03/2019,16/03/2019,05/04/2019,21/03/2019,"DPT20108 FS","DPT20108","DPT20120 SS,DPT20120 FF,DPT20168 FS","DPT20120,DPT20120,DPT20168",191,226,192,226,44,52,44,52,49,,"CCGT D1_Integrated Programme Schedule;CIVILS;CONSTRUCTION;Cooling Water System;Double Pipe Trench",1,1,0.0000012421,0.002034588,0.0006103764,5,1.0,0.0002593786,0.0068493151,0.0030769231,0.001875,0.0052219321,0.0019305019,0.0112107623,1.0,0.0729924654
1.4.2.12.7-79,EV045000,"Event 045 - Shaft F / Zone C Re-sequencing - Additional pipe piles",7112,"CCGTD1_IPS",TT_Task,"58722",-,-,-,100,TK_Complete,26/01/2019,11/01/2019,26/01/2019,23/01/2019,"","","","",182,217,182,218,42,50,42,51,45,,"CCGT D1_Integrated Programme Schedule;CIVILS;CONSTRUCTION;Cooling Water System;Double Pipe Trench",0,0,0.0,0.0,0.0,0,0.0,0.0000812387,0.0,0.0,0.0,0.0,0.0,0.0,0.0,0.0
1.4.2.12.7-80,DPT30086,"DPT /Zone C (Northern Section) - Excavation to 0.5m below 2nd layer struts",7112,"CCGTD1_IPS",TT_Task,"58722",-,-,-,100,TK_Complete,01/08/2019,31/07/2019,14/08/2019,24/08/2019,"DPT30084 FS,DPT30045 FS,SFF10250 FS","DPT30084,DPT30045,SFF10250","DPT30088 FS","DPT30088",209,245,211,249,48,57,49,58,68,,"CCGT D1_Integrated Programme Schedule;CIVILS;CONSTRUCTION;Cooling Water System;Double Pipe Trench",3,1,0.0000226065,0.004069176,0.0059003052,13,0.0,0.000738472,0.0205479452,0.0030769231,0.034125,0.0104438642,0.0186615187,0.0291479821,0.0,0.2693001076
1.4.2.12.7-81,DPT30088,"DPT /Zone C (Northern Section) - Install 2nd layer of struts",7112,"CCGTD1_IPS",TT_Task,"58722",-,-,-,100,TK_Complete,15/09/2019,22/08/2019,21/09/2019,03/09/2019,"DPT30086 FS","DPT30086","DPT30090 FS","DPT30090",215,248,216,250,50,58,50,58,76,,"CCGT D1_Integrated Programme Schedule;CIVILS;CONSTRUCTION;Cooling Water System;Double Pipe Trench",1,1,0.0000221925,0.0038657172,0.006103764,6,0.8,0.0007104836,0.0068493151,0.0030769231,0.0335,0.009921671,0.0193050193,0.0134529148,0.8,0.2578319115
1.4.2.12.7-82,DPT30084,"DPT /Zone C (Northern Section) - Install 1st layer of struts",7112,"CCGTD1_IPS",TT_Task,"58722",-,-,-,100,TK_Complete,15/08/2019,22/07/2019,28/08/2019,27/07/2019,"DPT30082 FS","DPT30082","DPT30086 FS","DPT30086",211,244,213,245,49,57,49,57,69,,"CCGT D1_Integrated Programme Schedule;CIVILS;CONSTRUCTION;Cooling Water System;Double Pipe Trench",1,1,0.0000008695,0.0042726348,0.0044760936,13,1.0,0.0002956469,0.0068493151,0.0030769231,0.0013125,0.0109660574,0.0141570142,0.0291479821,1.0,0.0878533257
1.4.2.12.7-83,DPT30082,"DPT /Zone C (Northern Section) - Excavation to 0.5m below 1st layer struts",7112,"CCGTD1_IPS",TT_Task,"58722",-,-,-,100,TK_Complete,01/08/2019,12/07/2019,14/08/2019,22/07/2019,"DPT30040 FS","DPT30040","DPT30084 FS","DPT30084",209,243,211,244,48,56,49,57,68,,"CCGT D1_Integrated Programme Schedule;CIVILS;CONSTRUCTION;Cooling Water System;Double Pipe Trench",1,1,0.0000008695,0.0044760936,0.0042726348,13,1.0,0.0002517251,0.0068493151,0.0030769231,0.0013125,0.0114882507,0.0135135135,0.0291479821,1.0,0.0698564796
1.4.2.12.7-84,DPT40040,"DPT /Seal Pit - ABWF",7112,"CCGTD1_IPS",TT_Task,"58722",-,-,-,100,TK_Complete,13/01/2020,13/01/2020,30/01/2020,30/01/2020,"DPT40010 FS","DPT40010","DPT40050 FF","DPT40050",232,269,235,271,54,62,54,63,88,,"CCGT D1_Integrated Programme Schedule;CIVILS;CONSTRUCTION;Cooling Water System;Double Pipe Trench",1,1,0.0000027534,0.0004069176,0.0093591048,17,1.0,0.0003988746,0.0068493151,0.0030769231,0.00415625,0.0010443864,0.0296010296,0.0381165919,1.0,0.1301507135
1.4.2.12.7-85,DPT40050,"DPT /Seal Pit - Building Services Installation",7112,"CCGTD1_IPS",TT_Task,"58722",-,-,-,100,TK_Complete,13/01/2020,13/01/2020,30/01/2020,30/01/2020,"DPT40040 FF","DPT40040","SW1.1 FF","SW1.1",232,269,235,271,54,62,54,63,88,,"CCGT D1_Integrated Programme Schedule;CIVILS;CONSTRUCTION;Cooling Water System;Double Pipe Trench",1,1,0.0000008902,0.0002034588,0.0095625636,17,1.0,0.0004176768,0.0068493151,0.0030769231,0.00134375,0.0005221932,0.0302445302,0.0381165919,1.0,0.1378548712
1.4.2.12.8,58721,"Shaft F (Permanent)",7112,"CCGTD1_IPS",WBS,"58715",,,,100,Complete,06/10/2017,06/10/2017,21/04/2020,21/04/2020,,,,,114,151,246,283,26,35,57,66,,,"CCGT D1_Integrated Programme Schedule;CIVILS;CONSTRUCTION;Cooling Water System"
1.4.2.12.8-1,SFF10043,"Shaft F - BD Consent for Commencement of Excavation & ELS  (from +3.2 to -9.6 mPD)[WITHDRAWN]",7112,"CCGTD1_IPS",TT_Task,"58721",-,-,-,100,TK_Complete,26/08/2018,30/07/2018,08/09/2018,12/08/2018,"","","SFF10045 FS","SFF10045",160,193,162,195,37,45,37,45,35,,"CCGT D1_Integrated Programme Schedule;CIVILS;CONSTRUCTION;Cooling Water System;Shaft F (Permanent)",0,1,0.0,0.001017294,0.0,13,1.0,0.0000812387,0.0,0.0030769231,0.0,0.0026109661,0.0,0.0291479821,1.0,0.0
1.4.2.12.8-2,SFF10055,"Shaft F - BD Consent for Commencement of Excavation & ELS below -17 mPD",7112,"CCGTD1_IPS",TT_Task,"58721",-,-,-,100,TK_Complete,26/01/2019,08/01/2019,22/02/2019,13/02/2019,"EV022010 FS,EV022012 FS","EV022010,EV022012","SFF10215 FF","SFF10215",182,216,186,221,42,50,43,51,44,,"CCGT D1_Integrated Programme Schedule;CIVILS;CONSTRUCTION;Cooling Water System;Shaft F (Permanent)",2,1,0.0000009937,0.0008138352,0.0012207528,27,0.4,0.0003246299,0.0136986301,0.0030769231,0.0015,0.0020887728,0.0038610039,0.0605381166,0.4,0.0997290613
1.4.2.12.8-3,SFF10290,"Shaft F - Break through pipe pile wall for TBM driving from Shaft E",7112,"CCGTD1_IPS",TT_Task,"58721",-,-,-,100,TK_Complete,07/11/2019,09/09/2019,17/11/2019,24/09/2019,"SFF10015 FS,SFF20035 FS","SFF10015,SFF20035","SFF10300 FS","SFF10300",223,251,224,253,52,58,52,59,81,,"CCGT D1_Integrated Programme Schedule;CIVILS;CONSTRUCTION;Cooling Water System;Shaft F (Permanent)",2,1,0.000136281,0.0099694812,0.017293998,10,0.6,0.0006526089,0.0136986301,0.0030769231,0.20571875,0.0255874674,0.0546975547,0.0224215247,0.6,0.2341178658
1.4.2.12.8-4,EV029010,"Event 029 - MC grouting note amendment (Type II)",7112,"CCGTD1_IPS",TT_Task,"58721",-,-,-,100,TK_Complete,26/07/2018,13/07/2018,24/08/2018,13/08/2018,"","","EV029020 FF,SFF10045 FS","EV029020,SFF10045",156,191,160,195,36,44,37,45,33,,"CCGT D1_Integrated Programme Schedule;CIVILS;CONSTRUCTION;Cooling Water System;Shaft F (Permanent)",0,2,0.0,0.0012207528,0.0,29,0.8,0.0000812387,0.0,0.0061538462,0.0,0.0031331593,0.0,0.0650224215,0.8,0.0
1.4.2.12.8-5,EV030030,"Event 030 - Additional tests / (Type II) Amendment",7112,"CCGTD1_IPS",TT_Task,"58721",-,-,-,100,TK_Complete,26/08/2018,23/08/2018,24/09/2018,19/09/2018,"EV030010 FS","EV030010","EV030040 FF","EV030040",160,196,164,200,37,45,38,46,35,,"CCGT D1_Integrated Programme Schedule;CIVILS;CONSTRUCTION;Cooling Water System;Shaft F (Permanent)",1,1,0.0000001656,0.001017294,0.0004069176,29,1.0,0.0001458221,0.0068493151,0.0030769231,0.00025,0.0026109661,0.0012870013,0.0650224215,1.0,0.0264629337
1.4.2.12.8-6,EV029020,"Event 029 - Resubmit BA14 for grout curtain",7112,"CCGTD1_IPS",TT_Task,"58721",-,-,-,100,TK_Complete,26/08/2018,13/08/2018,26/08/2018,13/08/2018,"EV029010 FF","EV029010","SFF10045 FS","SFF10045",160,195,160,195,37,45,37,45,35,,"CCGT D1_Integrated Programme Schedule;CIVILS;CONSTRUCTION;Cooling Water System;Shaft F (Permanent)",1,1,0.0,0.001017294,0.0002034588,0,1.0,0.0000812387,0.0068493151,0.0030769231,0.0,0.0026109661,0.0006435006,0.0,1.0,0.0
1.4.2.12.8-7,EV030010,"Event 030 - Additional Tests / Agree and finalize test method and location",7112,"CCGTD1_IPS",TT_Task,"58721",-,-,-,100,TK_Complete,26/07/2018,23/06/2018,23/09/2018,23/08/2018,"SFF-BA58b3 FS","SFF-BA58b3","EV030030 FS,EV030020 FS","EV030030,EV030020",156,188,164,196,36,43,38,45,33,,"CCGT D1_Integrated Programme Schedule;CIVILS;CONSTRUCTION;Cooling Water System;Shaft F (Permanent)",1,2,0.000000207,0.0014242116,0.0002034588,59,0.8,0.0001255894,0.0068493151,0.0061538462,0.0003125,0.0036553525,0.0006435006,0.1322869955,0.8,0.0181726139
1.4.2.12.8-8,EV030020,"Event 030  - Additional Tests / Carry out the additional tests",7112,"CCGTD1_IPS",TT_Task,"58721",-,-,-,100,TK_Complete,26/08/2018,24/08/2018,14/09/2018,14/09/2018,"EV030010 FS","EV030010","EV030040 FS","EV030040",160,197,163,200,37,45,38,46,35,,"CCGT D1_Integrated Programme Schedule;CIVILS;CONSTRUCTION;Cooling Water System;Shaft F (Permanent)",1,1,0.0000001656,0.001017294,0.0004069176,19,0.6,0.000123552,0.0068493151,0.0030769231,0.00025,0.0026109661,0.0012870013,0.0426008969,0.6,0.0173377842
1.4.2.12.8-9,EV030040,"Event 030 - Additional tests / Prepare and submit assessment report to BD 1 week prior to excavation below +3.2",7112,"CCGTD1_IPS",TT_Task,"58721",-,-,-,100,TK_Complete,26/11/2018,19/09/2018,02/12/2018,25/09/2018,"EV030020 FS,EV030030 FF","EV030020,EV030030","SFF10070 FS","SFF10070",173,200,174,201,40,46,40,47,39,,"CCGT D1_Integrated Programme Schedule;CIVILS;CONSTRUCTION;Cooling Water System;Shaft F (Permanent)",2,1,0.0000005797,0.0008138352,0.0008138352,6,1.0,0.0003105526,0.0136986301,0.0030769231,0.000875,0.0020887728,0.0025740026,0.0134529148,1.0,0.093960908
1.4.2.12.8-10,EV024020,"Event 024 - Re-do full core / backfill grout to core hole",7112,"CCGTD1_IPS",TT_Task,"58721",-,-,-,100,TK_Complete,26/07/2018,12/07/2018,26/07/2018,12/07/2018,"","","EV024030 FS","EV024030",156,190,156,190,36,44,36,44,33,,"CCGT D1_Integrated Programme Schedule;CIVILS;CONSTRUCTION;Cooling Water System;Shaft F (Permanent)",0,1,0.0,0.0006103764,0.0,0,1.0,0.0000812387,0.0,0.0030769231,0.0,0.0015665796,0.0,0.0,1.0,0.0
1.4.2.12.8-11,EV024030,"Event 024 - Re-do full core / curing grout cube for 28 days",7112,"CCGTD1_IPS",TT_Task,"58721",-,-,-,100,TK_Complete,26/07/2018,13/07/2018,22/08/2018,09/08/2018,"EV024020 FS","EV024020","EV024040 FS","EV024040",156,191,160,194,36,44,37,45,33,,"CCGT D1_Integrated Programme Schedule;CIVILS;CONSTRUCTION;Cooling Water System;Shaft F (Permanent)",1,1,0.0000000828,0.0004069176,0.0002034588,27,1.0,0.0001503957,0.0068493151,0.0030769231,0.000125,0.0010443864,0.0006435006,0.0605381166,1.0,0.0283369572
1.4.2.12.8-12,EV024040,"Event 024 - Redo full core / cube test and lab report",7112,"CCGTD1_IPS",TT_Task,"58721",-,-,-,100,TK_Complete,26/11/2018,03/08/2018,30/11/2018,11/08/2018,"EV024030 FS","EV024030","EV011052 FS","EV011052",173,194,174,195,40,45,40,45,39,,"CCGT D1_Integrated Programme Schedule;CIVILS;CONSTRUCTION;Cooling Water System;Shaft F (Permanent)",1,1,0.0000000828,0.0002034588,0.0004069176,4,0.6,0.000209244,0.0068493151,0.0030769231,0.000125,0.0005221932,0.0012870013,0.0089686099,0.6,0.0524499399
1.4.2.12.8-13,EV011052,"Event 011F - BD interview on trial jet grout assessment report",7112,"CCGTD1_IPS",TT_Task,"58721",-,-,-,100,TK_Complete,01/12/2018,04/09/2018,01/12/2018,04/09/2018,"EV011050 FS,EV024040 FS","EV011050,EV024040","","",174,198,174,198,40,46,40,46,41,,"CCGT D1_Integrated Programme Schedule;CIVILS;CONSTRUCTION;Cooling Water System;Shaft F (Permanent)",2,0,0.0,0.0,0.0016276704,0,1.0,0.0000812387,0.0136986301,0.0,0.0,0.0,0.0051480051,0.0,1.0,0.0
1.4.2.12.8-14,EV003020,"Event 003a - 6.6kVA cable strike at Shaft A",7112,"CCGTD1_IPS",TT_Task,"58721",-,-,-,100,TK_Complete,23/10/2017,24/10/2017,23/10/2017,17/11/2017,"","","EV003021 FF","EV003021",116,153,116,157,27,35,27,36,13,,"CCGT D1_Integrated Programme Schedule;CIVILS;CONSTRUCTION;Cooling Water System;Shaft F (Permanent)",0,1,0.0,0.0089521872,0.0,0,0.0,0.0000812387,0.0,0.0030769231,0.0,0.0229765013,0.0,0.0,0.0,0.0
1.4.2.12.8-15,EV003022,"Event 003a - Additional trial trenhes prior to pipe piling",7112,"CCGTD1_IPS",TT_Task,"58721",-,-,-,100,TK_Complete,23/10/2017,18/11/2017,23/10/2017,23/11/2017,"EV003021 FS","EV003021","SFF10020 FS","SFF10020",116,157,116,157,27,36,27,36,13,,"CCGT D1_Integrated Programme Schedule;CIVILS;CONSTRUCTION;Cooling Water System;Shaft F (Permanent)",1,1,0.0000034779,0.0085452696,0.0004069176,0,0.6,0.0000812387,0.0068493151,0.0030769231,0.00525,0.0219321149,0.0012870013,0.0,0.6,0.0
1.4.2.12.8-16,EV003021,"Event 003a - Permit to excavation granted",7112,"CCGTD1_IPS",TT_FinMile,"58721",-,-,-,100,TK_Complete,23/10/2017,17/11/2017,23/10/2017,17/11/2017,"EV003020 FF","EV003020","EV003022 FS","EV003022",116,157,116,157,27,36,27,36,13,,"CCGT D1_Integrated Programme Schedule;CIVILS;CONSTRUCTION;Cooling Water System;Shaft F (Permanent)",1,1,0.0000017804,0.0087487284,0.0002034588,0,1.0,0.0000812387,0.0068493151,0.0030769231,0.0026875,0.0224543081,0.0006435006,0.0,1.0,0.0
1.4.2.12.8-17,SFF10020,"Shaft F - 610 Dia. Pipe Pile Wall @ 750 c/c (57 nos., total driving 2223m)",7112,"CCGTD1_IPS",TT_Task,"58721",-,-,-,100,TK_Complete,01/11/2017,24/11/2017,14/12/2017,02/03/2018,"PROSC020 FS,SFFt1BA8 FS,EV002020 FS,EV003022 FS","PROSC020,SFFt1BA8,EV002020,EV003022","SFF10030 FF,DPT30010 FS,SFF10025 FF","SFF10030,DPT30010,SFF10025",118,158,124,172,27,36,28,40,13,,"CCGT D1_Integrated Programme Schedule;CIVILS;CONSTRUCTION;Cooling Water System;Shaft F (Permanent)",4,3,0.0000133735,0.0083418108,0.0018311292,43,0.0,0.0003131188,0.0273972603,0.0092307692,0.0201875,0.0214099217,0.0057915058,0.0964125561,0.0,0.0950124329
1.4.2.12.8-18,SFF10030,"Shaft F - Grout Curtain (behind pipe pile wall) (total drilling 1950m)",7112,"CCGTD1_IPS",TT_Task,"58721",-,-,-,100,TK_Complete,01/03/2018,23/02/2018,09/04/2018,26/03/2018,"SFF10020 FF,DPT30010 FF","SFF10020,DPT30010","SFF10040 FS","SFF10040",135,171,140,175,31,39,32,40,21,,"CCGT D1_Integrated Programme Schedule;CIVILS;CONSTRUCTION;Cooling Water System;Shaft F (Permanent)",2,1,0.0000015319,0.0014242116,0.0022380468,39,1.0,0.0002605997,0.0136986301,0.0030769231,0.0023125,0.0036553525,0.0070785071,0.0874439462,1.0,0.0734928373
1.4.2.12.8-19,SFF10040,"Shaft F - Pumping Test (Stage 1) [not accepted by BD]",7112,"CCGTD1_IPS",TT_Task,"58721",-,-,-,100,TK_Complete,06/05/2018,29/03/2018,14/05/2018,30/04/2018,"SFF10035 FS,SFF10030 FS","SFF10035,SFF10030","SFF10041 FS","SFF10041",144,175,145,180,33,41,34,42,27,,"CCGT D1_Integrated Programme Schedule;CIVILS;CONSTRUCTION;Cooling Water System;Shaft F (Permanent)",2,1,0.0000015733,0.0012207528,0.0026449644,8,0.0,0.0003723001,0.0136986301,0.0030769231,0.002375,0.0031331593,0.0083655084,0.0179372197,0.0,0.1192618574
1.4.2.12.8-20,SFF10250,"Shaft F - BD inspection on stratum",7112,"CCGTD1_IPS",TT_Task,"58721",-,-,-,100,TK_Complete,11/06/2019,10/05/2019,11/06/2019,10/05/2019,"SFF10232 FS","SFF10232","SFF10260 FS,DPT30086 FS","SFF10260,DPT30086",201,234,201,234,47,54,47,54,62,,"CCGT D1_Integrated Programme Schedule;CIVILS;CONSTRUCTION;Cooling Water System;Shaft F (Permanent)",1,2,0.000012918,0.0158697864,0.0008138352,0,1.0,0.0000812387,0.0068493151,0.0061538462,0.0195,0.0407310705,0.0025740026,0.0,1.0,0.0
1.4.2.12.8-21,SFF10010,"Shaft F - Grout Blocks (at launching areas) (total drilling 1822m)",7112,"CCGTD1_IPS",TT_Task,"58721",-,-,-,100,TK_Complete,27/12/2018,26/11/2018,23/01/2019,27/02/2019,"PROSC020 FS,EV011060 FS","PROSC020,EV011060","SFF10280 FS,SFF10015 FF,SFF10170 SS","SFF10280,SFF10015,SFF10170",178,210,182,223,41,49,42,52,42,,"CCGT D1_Integrated Programme Schedule;CIVILS;CONSTRUCTION;Cooling Water System;Shaft F (Permanent)",2,3,0.0000230827,0.0144455748,0.0018311292,27,0.0,0.0003481512,0.0136986301,0.0092307692,0.03484375,0.037075718,0.0057915058,0.0605381166,0.0,0.1093668676
1.4.2.12.8-22,SFF10260,"Shaft F - Cast base slab and bottom skin wall",7112,"CCGTD1_IPS",TT_Task,"58721",-,-,-,100,TK_Complete,01/06/2019,11/05/2019,14/06/2019,07/06/2019,"SFF10250 FS,CWS_2BA8XX FS,SFFp2BA8 FS","SFF10250,CWS_2BA8XX,SFFp2BA8","SFF20010 FS","SFF20010",200,234,202,238,46,54,47,55,61,,"CCGT D1_Integrated Programme Schedule;CIVILS;CONSTRUCTION;Cooling Water System;Shaft F (Permanent)",3,1,0.0000393337,0.0130213632,0.0038657172,13,0.0,0.0002796485,0.0205479452,0.0030769231,0.059375,0.0334203655,0.0122265122,0.0291479821,0.0,0.0812980284
1.4.2.12.8-23,SFF10280,"Shaft F - Break through pipe pile wall for TBM driving to Shaft A",7112,"CCGTD1_IPS",TT_Task,"58721",-,-,-,100,TK_Complete,05/08/2019,08/06/2019,15/08/2019,25/06/2019,"SFF10010 FS,SFF10015 FS,SFF20010 SS","SFF10010,SFF10015,SFF20010","SFF20020 FS","SFF20020",209,238,211,240,48,55,49,56,69,,"CCGT D1_Integrated Programme Schedule;CIVILS;CONSTRUCTION;Cooling Water System;Shaft F (Permanent)",3,1,0.0000312392,0.0124109868,0.0075279756,10,0.4,0.0005947383,0.0205479452,0.0030769231,0.04715625,0.0318537859,0.0238095238,0.0224215247,0.4,0.21040549
1.4.2.12.8-24,SFF20010,"Shaft F - Set up and launch micro TBM to Shaft A",7112,"CCGTD1_IPS",TT_Task,"58721",-,-,-,100,TK_Complete,01/08/2019,15/06/2019,25/08/2019,08/07/2019,"SFF10260 FS","SFF10260","PROMA014 FS,SFF10280 SS","PROMA014,SFF10280",209,239,212,242,48,55,49,56,68,,"CCGT D1_Integrated Programme Schedule;CIVILS;CONSTRUCTION;Cooling Water System;Shaft F (Permanent)",1,2,0.0000411555,0.0128179044,0.004069176,24,1.0,0.0003193318,0.0068493151,0.0061538462,0.062125,0.0328981723,0.0128700129,0.0538116592,1.0,0.097558193
1.4.2.12.8-25,SFF20020,"Shaft F - Micro tunneling and pipe jacking to Shaft A",7112,"CCGTD1_IPS",TT_Task,"58721",-,-,-,100,TK_Complete,01/08/2019,09/07/2019,18/08/2019,21/08/2019,"PROMA012 FS,PROMA014 FS,SFF10280 FS,SFA10284 FF","PROMA012,PROMA014,SFF10280,SFA10284","SFA20010 FS,SFF20035 FS","SFA20010,SFF20035",209,242,211,248,48,56,49,58,68,,"CCGT D1_Integrated Programme Schedule;CIVILS;CONSTRUCTION;Cooling Water System;Shaft F (Permanent)",4,2,0.0001536499,0.012207528,0.0168870804,17,0.0,0.0011791685,0.0273972603,0.0061538462,0.2319375,0.0313315927,0.0534105534,0.0381165919,0.0,0.4498746414
1.4.2.12.8-26,SFF20030,"Shaft F - Micro tunneling and pipe jacking from Shaft E (Part 2 of 2)",7112,"CCGTD1_IPS",TT_Task,"58721",-,-,-,100,TK_Complete,01/11/2019,19/09/2019,11/11/2019,17/10/2019,"SFE10278 FS","SFE10278","SFF20040 FS","SFF20040",222,252,223,256,51,59,52,59,81,,"CCGT D1_Integrated Programme Schedule;CIVILS;CONSTRUCTION;Cooling Water System;Shaft F (Permanent)",1,1,0.0001508344,0.0097660224,0.0197355036,10,0.0,0.0010589846,0.0068493151,0.0030769231,0.2276875,0.0250652742,0.0624195624,0.0224215247,0.0,0.4006295293
1.4.2.12.8-27,SFF30262,"Shaft F - Install vertical sections and precast stair wells including mass fill",7112,"CCGTD1_IPS",TT_Task,"58721",-,-,-,100,TK_Complete,01/01/2020,30/10/2019,08/02/2020,06/12/2019,"PROMA013 FS,SFF20040 FS","PROMA013,SFF20040","SFF20033XX FS,SFF20023XX FS,SFF30010XX FS,DPT40030 FS","SFF20033XX,SFF20023XX,SFF30010XX,DPT40030",231,258,236,264,53,60,55,61,86,,"CCGT D1_Integrated Programme Schedule;CIVILS;CONSTRUCTION;Cooling Water System;Shaft F (Permanent)",2,4,0.000123011,0.004069176,0.0364191251,38,1.0,0.0013012611,0.0136986301,0.0123076923,0.1856875,0.0104438642,0.1151866152,0.0852017937,1.0,0.4999018687
1.4.2.12.8-28,SFF30010XX,"Shaft F - Construct permanent shaft wall (Pour 1 of 8 / standard lift 3m)",7112,"CCGTD1_IPS",TT_Task,"58721",-,-,-,100,TK_Complete,01/01/2020,07/12/2019,01/01/2020,07/12/2019,"SFF30262 FS","SFF30262","SFF30040XX FS","SFF30040XX",231,264,231,264,53,61,53,61,86,,"CCGT D1_Integrated Programme Schedule;CIVILS;CONSTRUCTION;Cooling Water System;Shaft F (Permanent)",1,1,0.0000447162,0.0012207528,0.0366225839,0,1.0,0.0000812387,0.0068493151,0.0030769231,0.0675,0.0031331593,0.1158301158,0.0,1.0,0.0
1.4.2.12.8-29,SFF30040XX,"Shaft F - Construct permanent shaft wall (Pour 2 of 8)",7112,"CCGTD1_IPS",TT_Task,"58721",-,-,-,100,TK_Complete,01/01/2020,07/12/2019,01/01/2020,07/12/2019,"SFF30010XX FS","SFF30010XX","SFF30070XX FS","SFF30070XX",231,264,231,264,53,61,53,61,86,,"CCGT D1_Integrated Programme Schedule;CIVILS;CONSTRUCTION;Cooling Water System;Shaft F (Permanent)",1,1,0.0000374705,0.001017294,0.0368260427,0,1.0,0.0000812387,0.0068493151,0.0030769231,0.0565625,0.0026109661,0.1164736165,0.0,1.0,0.0
1.4.2.12.8-30,SFF30070XX,"Shaft F - Construct permanent shaft wall (Pour 3 of 8)",7112,"CCGTD1_IPS",TT_Task,"58721",-,-,-,100,TK_Complete,01/01/2020,07/12/2019,01/01/2020,07/12/2019,"SFF30040XX FS","SFF30040XX","SFF30100XX FS","SFF30100XX",231,264,231,264,53,61,53,61,86,,"CCGT D1_Integrated Programme Schedule;CIVILS;CONSTRUCTION;Cooling Water System;Shaft F (Permanent)",1,1,0.000030142,0.0008138352,0.0370295015,0,1.0,0.0000812387,0.0068493151,0.0030769231,0.0455,0.0020887728,0.1171171171,0.0,1.0,0.0
1.4.2.12.8-31,SFF30100XX,"Shaft F - Construct permanent shaft wall (Pour 4 of 8)",7112,"CCGTD1_IPS",TT_Task,"58721",-,-,-,100,TK_Complete,01/01/2020,07/12/2019,01/01/2020,07/12/2019,"SFF30070XX FS","SFF30070XX","SFF30130XX FS","SFF30130XX",231,264,231,264,53,61,53,61,86,,"CCGT D1_Integrated Programme Schedule;CIVILS;CONSTRUCTION;Cooling Water System;Shaft F (Permanent)",1,1,0.0000227307,0.0006103764,0.0372329603,0,1.0,0.0000812387,0.0068493151,0.0030769231,0.0343125,0.0015665796,0.1177606178,0.0,1.0,0.0
1.4.2.12.8-32,SFF30130XX,"Shaft F - Construct permanent shaft wall (Pour 5 of 8)",7112,"CCGTD1_IPS",TT_Task,"58721",-,-,-,100,TK_Complete,01/01/2020,07/12/2019,01/01/2020,07/12/2019,"SFF30100XX FS","SFF30100XX","SFF30160XX FS","SFF30160XX",231,264,231,264,53,61,53,61,86,,"CCGT D1_Integrated Programme Schedule;CIVILS;CONSTRUCTION;Cooling Water System;Shaft F (Permanent)",1,1,0.0000152366,0.0004069176,0.0374364191,0,1.0,0.0000812387,0.0068493151,0.0030769231,0.023,0.0010443864,0.1184041184,0.0,1.0,0.0
1.4.2.12.8-33,SFF30160XX,"Shaft F - Construct permanent shaft wall (Pour 6 of 8)",7112,"CCGTD1_IPS",TT_Task,"58721",-,-,-,100,TK_Complete,01/01/2020,07/12/2019,01/01/2020,07/12/2019,"SFF30130XX FS","SFF30130XX","SFF30190XX FS","SFF30190XX",231,264,231,264,53,61,53,61,86,,"CCGT D1_Integrated Programme Schedule;CIVILS;CONSTRUCTION;Cooling Water System;Shaft F (Permanent)",1,1,0.0000076597,0.0002034588,0.0376398779,0,1.0,0.0000812387,0.0068493151,0.0030769231,0.0115625,0.0005221932,0.119047619,0.0,1.0,0.0
1.4.2.12.8-34,SFF30190XX,"Shaft F - Construct permanent shaft wall (Pour 7 of 8)",7112,"CCGTD1_IPS",TT_Task,"58721",-,-,-,100,TK_Complete,01/01/2020,07/12/2019,01/01/2020,07/12/2019,"SFF30160XX FS","SFF30160XX","","",231,264,231,264,53,61,53,61,86,,"CCGT D1_Integrated Programme Schedule;CIVILS;CONSTRUCTION;Cooling Water System;Shaft F (Permanent)",1,0,0.0,0.0,0.0378433367,0,1.0,0.0000812387,0.0068493151,0.0,0.0,0.0,0.1196911197,0.0,1.0,0.0
1.4.2.12.8-35,SFF30250XX,"Shaft F - Construct the top slab of permanent shaft (with temporary opening for material delivery)",7112,"CCGTD1_IPS",TT_Task,"58721",-,-,-,100,TK_Complete,01/01/2020,07/12/2019,01/01/2020,07/12/2019,"","","SFF30260XX FS,SFF30266XX FS","SFF30260XX,SFF30266XX",231,264,231,264,53,61,53,61,86,,"CCGT D1_Integrated Programme Schedule;CIVILS;CONSTRUCTION;Cooling Water System;Shaft F (Permanent)",0,2,0.0,0.0012207528,0.0,0,1.0,0.0000812387,0.0,0.0061538462,0.0,0.0031331593,0.0,0.0,1.0,0.0
1.4.2.12.8-36,SFF30260XX,"Shaft F - Construct Maintenance Access Shaft and Emergency Access Shaft",7112,"CCGTD1_IPS",TT_Task,"58721",-,-,-,100,TK_Complete,01/01/2020,07/12/2019,01/01/2020,07/12/2019,"SFF30250XX FS","SFF30250XX","","",231,264,231,264,53,61,53,61,86,,"CCGT D1_Integrated Programme Schedule;CIVILS;CONSTRUCTION;Cooling Water System;Shaft F (Permanent)",1,0,0.0,0.0,0.0002034588,0,1.0,0.0000812387,0.0068493151,0.0,0.0,0.0,0.0006435006,0.0,1.0,0.0
1.4.2.12.8-37,SFF30290,"Shaft F - Backfill to 2m existing ground level",7112,"CCGTD1_IPS",TT_Task,"58721",-,-,-,100,TK_Complete,26/03/2020,26/03/2020,01/04/2020,01/04/2020,"DPT30140 FS,SFF30266XX FS","DPT30140,SFF30266XX","SFF30310 FS","SFF30310",243,279,244,280,56,65,56,65,89,,"CCGT D1_Integrated Programme Schedule;CIVILS;CONSTRUCTION;Cooling Water System;Shaft F (Permanent)",2,1,0.0000197497,0.0006103764,0.0449643947,6,1.0,0.0005037317,0.0136986301,0.0030769231,0.0298125,0.0015665796,0.1422136422,0.0134529148,1.0,0.1731156848
1.4.2.12.8-38,SFF30310,"Shaft F - Trim pipe pile wall to 2m below ground level",7112,"CCGTD1_IPS",TT_Task,"58721",-,-,-,100,TK_Complete,02/04/2020,02/04/2020,03/04/2020,03/04/2020,"SFF30290 FS","SFF30290","SFF30320 FS","SFF30320",244,280,244,281,56,65,57,65,90,,"CCGT D1_Integrated Programme Schedule;CIVILS;CONSTRUCTION;Cooling Water System;Shaft F (Permanent)",1,1,0.0000106822,0.0004069176,0.0451678535,1,1.0,0.0005078985,0.0068493151,0.0030769231,0.016125,0.0010443864,0.1428571429,0.0022421525,1.0,0.1748230191
1.4.2.12.8-39,SFF30320,"Shaft F - Backfill and reinstate to ground level",7112,"CCGTD1_IPS",TT_Task,"58721",-,-,-,100,TK_Complete,04/04/2020,04/04/2020,10/04/2020,10/04/2020,"SFF30310 FS","SFF30310","SW1.1 FF","SW1.1",244,281,245,282,57,65,57,65,90,,"CCGT D1_Integrated Programme Schedule;CIVILS;CONSTRUCTION;Cooling Water System;Shaft F (Permanent)",1,1,0.0000015319,0.0002034588,0.0453713123,6,1.0,0.0005091142,0.0068493151,0.0030769231,0.0023125,0.0005221932,0.1435006435,0.0134529148,1.0,0.1753211472
1.4.2.12.8-40,SFF30266XX,"Shaft F - Seal up pipe penetrations through the top slab",7112,"CCGTD1_IPS",TT_Task,"58721",-,-,-,100,TK_Complete,10/01/2020,07/12/2019,10/01/2020,07/12/2019,"SFF30250XX FS,SFF30265XX FS","SFF30250XX,SFF30265XX","SFF30290 FS","SFF30290",232,264,232,264,54,61,54,61,88,,"CCGT D1_Integrated Programme Schedule;CIVILS;CONSTRUCTION;Cooling Water System;Shaft F (Permanent)",2,1,0.0000003312,0.0008138352,0.0004069176,0,1.0,0.0000812387,0.0136986301,0.0030769231,0.0005,0.0020887728,0.0012870013,0.0,1.0,0.0
1.4.2.12.8-41,SFF30264,"Shaft F - Install CW pipe bends / horizontal section of supply pipeline above the top landing unit of staircase",7112,"CCGTD1_IPS",TT_Task,"58721",-,-,-,100,TK_Complete,07/01/2020,07/12/2019,09/01/2020,23/12/2019,"SFF20023XX FS,DPT30125XX FS,DPT30130 FF,DPT40030 SS","SFF20023XX,DPT30125XX,DPT30130,DPT40030","DPT30140 FF","DPT30140",231,264,232,266,54,61,54,62,87,,"CCGT D1_Integrated Programme Schedule;CIVILS;CONSTRUCTION;Cooling Water System;Shaft F (Permanent)",4,1,0.0000148226,0.0012207528,0.0439471007,2,0.0,0.0002765275,0.0273972603,0.0030769231,0.022375,0.0031331593,0.138996139,0.0044843049,0.0,0.0800192048
1.4.2.12.8-42,SFF20035,"Shaft F - Demob launching rails (F drive) and install retrieval rails (E drive)",7112,"CCGTD1_IPS",TT_Task,"58721",-,-,-,100,TK_Complete,01/01/2020,08/09/2019,06/01/2020,08/09/2019,"SFF20020 FS","SFF20020","SFF10290 FS","SFF10290",231,251,231,251,53,58,54,58,86,,"CCGT D1_Integrated Programme Schedule;CIVILS;CONSTRUCTION;Cooling Water System;Shaft F (Permanent)",1,1,0.000103841,0.01017294,0.0170905392,5,1.0,0.0004676567,0.0068493151,0.0030769231,0.15675,0.0261096606,0.0540540541,0.0112107623,1.0,0.1583340297
1.4.2.12.8-43,SFF20022,"Shaft F - Grouting and Welding CWP between Shaft A and Shaft F",7112,"CCGTD1_IPS",TT_Task,"58721",-,-,-,100,TK_Complete,10/11/2019,05/09/2019,29/11/2019,10/10/2019,"SFA20010 SS","SFA20010","SFF20023XX FS,SFA20020 FS","SFF20023XX,SFA20020",223,250,226,255,52,58,52,59,81,,"CCGT D1_Integrated Programme Schedule;CIVILS;CONSTRUCTION;Cooling Water System;Shaft F (Permanent)",1,2,0.0000192942,0.003051882,0.017293998,19,0.0,0.0005535652,0.0068493151,0.0061538462,0.029125,0.0078328982,0.0546975547,0.0426008969,0.0,0.1935348998
1.4.2.12.8-44,SFF20023XX,"Shaft F - Testing to CWP between Shaft A and Shaft F",7112,"CCGTD1_IPS",TT_Task,"58721",-,-,-,100,TK_Complete,01/01/2020,07/12/2019,01/01/2020,07/12/2019,"SFF20022 FS,SFA20050 FS,SFF30262 FS","SFF20022,SFA20050,SFF30262","SFF30264 FS","SFF30264",231,264,231,264,53,61,53,61,86,,"CCGT D1_Integrated Programme Schedule;CIVILS;CONSTRUCTION;Cooling Water System;Shaft F (Permanent)",3,1,0.0000193563,0.0014242116,0.0376398779,0,1.0,0.0000812387,0.0205479452,0.0030769231,0.02921875,0.0036553525,0.119047619,0.0,1.0,0.0
1.4.2.12.8-45,SFF20032,"Grouting and Welding CWP between Shaft E and Shaft F (Part 2 of 2)",7112,"CCGTD1_IPS",TT_Task,"58721",-,-,-,100,TK_Complete,01/01/2020,09/11/2019,06/01/2020,15/11/2019,"SFD10302 FS","SFD10302","SFF20033XX FS,SFE30045 FS","SFF20033XX,SFE30045",231,260,231,261,53,60,54,60,86,,"CCGT D1_Integrated Programme Schedule;CIVILS;CONSTRUCTION;Cooling Water System;Shaft F (Permanent)",1,2,0.0000006625,0.0032553408,0.0366225839,5,1.0,0.0003390705,0.0068493151,0.0061538462,0.001,0.0083550914,0.1158301158,0.0112107623,1.0,0.1056460764
1.4.2.12.8-46,SFF20033XX,"Testing to CWP between Shaft E and Shaft F (Part 2 of 2)",7112,"CCGTD1_IPS",TT_Task,"58721",-,-,-,100,TK_Complete,01/01/2020,07/12/2019,07/01/2020,07/12/2019,"SFF20032 FS,SFF30262 FS,SFE30127XX FF","SFF20032,SFF30262,SFE30127XX","","",231,264,231,264,53,61,54,61,86,,"CCGT D1_Integrated Programme Schedule;CIVILS;CONSTRUCTION;Cooling Water System;Shaft F (Permanent)",3,0,0.0,0.0,0.0386571719,6,1.0,0.0006794578,0.0205479452,0.0,0.0,0.0,0.1222651223,0.0134529148,1.0,0.245119152
1.4.2.12.8-47,SFF10060,"Shaft F - Intstall 1st layer of ring beam",7112,"CCGTD1_IPS",TT_Task,"58721",-,-,-,100,TK_Complete,27/11/2018,08/09/2018,05/12/2018,29/09/2018,"SFF10050 FS,SFJt2BA8 FS","SFF10050,SFJt2BA8","SFF10070 FS","SFF10070",173,199,175,202,40,46,40,47,40,,"CCGT D1_Integrated Programme Schedule;CIVILS;CONSTRUCTION;Cooling Water System;Shaft F (Permanent)",2,1,0.0000027327,0.0008138352,0.0036622584,8,0.0,0.0005008437,0.0136986301,0.0030769231,0.004125,0.0020887728,0.0115830116,0.0179372197,0.0,0.1719323383
1.4.2.12.8-48,SFF10050,"Shaft F - Excavate to below 1st layer of ring beam / Install lagging plates",7112,"CCGTD1_IPS",TT_Task,"58721",-,-,-,100,TK_Complete,27/08/2018,16/08/2018,06/09/2018,07/09/2018,"PROSC010 FS,SFF10025 FS,EV022010 FS","PROSC010,SFF10025,EV022010","SFF10060 FS","SFF10060",160,195,162,199,37,45,37,46,35,,"CCGT D1_Integrated Programme Schedule;CIVILS;CONSTRUCTION;Cooling Water System;Shaft F (Permanent)",3,1,0.0000028569,0.001017294,0.003051882,10,0.0,0.0003424768,0.0205479452,0.0030769231,0.0043125,0.0026109661,0.0096525097,0.0224215247,0.0,0.1070418267
1.4.2.12.8-49,SFF10080,"Shaft F - Intstall lagging plates and 2nd layer of ring beam",7112,"CCGTD1_IPS",TT_Task,"58721",-,-,-,100,TK_Complete,27/11/2018,04/10/2018,30/11/2018,11/10/2018,"SFF10070 FF","SFF10070","SFF10090 FS","SFF10090",173,202,174,203,40,47,40,47,40,,"CCGT D1_Integrated Programme Schedule;CIVILS;CONSTRUCTION;Cooling Water System;Shaft F (Permanent)",1,1,0.000003892,0.0004069176,0.0095625636,3,0.8,0.0012742291,0.0068493151,0.0030769231,0.005875,0.0010443864,0.0302445302,0.0067264574,0.8,0.4888255409
1.4.2.12.8-50,SFF10070,"Shaft F - Excavate to below 2nd layer of ring beam",7112,"CCGTD1_IPS",TT_Task,"58721",-,-,-,100,TK_Complete,26/11/2018,02/10/2018,29/11/2018,06/10/2018,"SFF10045 FS,SFF10060 FS,EV030040 FS","SFF10045,SFF10060,EV030040","SFF10080 FF","SFF10080",173,202,174,203,40,47,40,47,39,,"CCGT D1_Integrated Programme Schedule;CIVILS;CONSTRUCTION;Cooling Water System;Shaft F (Permanent)",3,1,0.0000057137,0.0006103764,0.0093591048,3,1.0,0.0014003563,0.0205479452,0.0030769231,0.008625,0.0015665796,0.0296010296,0.0067264574,1.0,0.5405059455
1.4.2.12.8-51,SFF10100,"Shaft F - Intstall lagging plates and 3rd layer of ring beam",7112,"CCGTD1_IPS",TT_Task,"58721",-,-,-,100,TK_Complete,03/12/2018,12/10/2018,06/12/2018,28/10/2018,"SFF10090 FF","SFF10090","","",174,204,175,206,40,47,40,48,41,,"CCGT D1_Integrated Programme Schedule;CIVILS;CONSTRUCTION;Cooling Water System;Shaft F (Permanent)",1,0,0.0,0.0,0.0099694812,3,0.0,0.0010774096,0.0068493151,0.0,0.0,0.0,0.0315315315,0.0067264574,0.0,0.4081791439
1.4.2.12.8-52,SFF10110,"Shaft F - Excavate to below 4th layer of ring beam",7112,"CCGTD1_IPS",TT_Task,"58721",-,-,-,100,TK_Complete,07/12/2018,29/10/2018,11/12/2018,03/11/2018,"","","SFF10120 FF","SFF10120",175,206,175,207,40,48,41,48,42,,"CCGT D1_Integrated Programme Schedule;CIVILS;CONSTRUCTION;Cooling Water System;Shaft F (Permanent)",0,1,0.0,0.0006103764,0.0,4,1.0,0.0000812387,0.0,0.0030769231,0.0,0.0015665796,0.0,0.0089686099,1.0,0.0
1.4.2.12.8-53,SFF10120,"Shaft F - Intstall lagging plates and 4th layer of ring beam",7112,"CCGTD1_IPS",TT_Task,"58721",-,-,-,100,TK_Complete,08/12/2018,31/10/2018,12/12/2018,08/11/2018,"SFF10110 FF","SFF10110","SFF10130 FS","SFF10130",175,206,176,207,40,48,41,48,42,,"CCGT D1_Integrated Programme Schedule;CIVILS;CONSTRUCTION;Cooling Water System;Shaft F (Permanent)",1,1,0.0000000828,0.0004069176,0.0002034588,4,0.8,0.0001503957,0.0068493151,0.0030769231,0.000125,0.0010443864,0.0006435006,0.0089686099,0.8,0.0283369572
1.4.2.12.8-54,SFF10130,"Shaft F - Excavate to below 5th layer of ring beam",7112,"CCGTD1_IPS",TT_Task,"58721",-,-,-,100,TK_Complete,26/11/2018,09/11/2018,30/11/2018,14/11/2018,"SFF10120 FS","SFF10120","SFF10140 FF","SFF10140",173,208,174,208,40,48,40,48,39,,"CCGT D1_Integrated Programme Schedule;CIVILS;CONSTRUCTION;Cooling Water System;Shaft F (Permanent)",1,1,0.0000000828,0.0002034588,0.0004069176,4,1.0,0.000209244,0.0068493151,0.0030769231,0.000125,0.0005221932,0.0012870013,0.0089686099,1.0,0.0524499399
1.4.2.12.8-55,SFF10140,"Shaft F - Intstall lagging plates and 5th layer of ring beam (AF TBC)",7112,"CCGTD1_IPS",TT_Task,"58721",-,-,-,100,TK_Complete,26/11/2018,10/11/2018,29/11/2018,20/11/2018,"SFF10130 FF","SFF10130","","",173,208,174,209,40,48,40,48,39,,"CCGT D1_Integrated Programme Schedule;CIVILS;CONSTRUCTION;Cooling Water System;Shaft F (Permanent)",1,0,0.0,0.0,0.0006103764,3,0.4,0.0002593786,0.0068493151,0.0,0.0,0.0,0.0019305019,0.0067264574,0.4,0.0729924654
1.4.2.12.8-56,SFF10090,"Shaft F - Excavate to below 3rd layer of ring beam",7112,"CCGTD1_IPS",TT_Task,"58721",-,-,-,100,TK_Complete,01/12/2018,11/10/2018,05/12/2018,17/10/2018,"SFF10080 FS","SFF10080","SFF10100 FF","SFF10100",174,203,175,204,40,47,40,47,41,,"CCGT D1_Integrated Programme Schedule;CIVILS;CONSTRUCTION;Cooling Water System;Shaft F (Permanent)",1,1,0.0000019874,0.0002034588,0.0097660224,4,0.6,0.001167381,0.0068493151,0.0030769231,0.003,0.0005221932,0.0308880309,0.0089686099,0.6,0.4450447411
1.4.2.12.8-57,SFF10150,"Shaft F - Excavate to below 6th layer of ring beam (AS TBC)",7112,"CCGTD1_IPS",TT_Task,"58721",-,-,-,100,TK_Complete,26/11/2018,21/11/2018,29/11/2018,27/11/2018,"","","SFF10160 FF","SFF10160",173,209,174,210,40,48,40,49,39,,"CCGT D1_Integrated Programme Schedule;CIVILS;CONSTRUCTION;Cooling Water System;Shaft F (Permanent)",0,1,0.0,0.0158697864,0.0,3,0.8,0.0000812387,0.0,0.0030769231,0.0,0.0407310705,0.0,0.0067264574,0.8,0.0
1.4.2.12.8-58,SFF10160,"Shaft F - Intstall lagging plates and 6th layer of ring beam",7112,"CCGTD1_IPS",TT_Task,"58721",-,-,-,100,TK_Complete,26/11/2018,23/11/2018,28/11/2018,03/12/2018,"SFF10150 FF","SFF10150","SFF10170 FS,EV022012 FS","SFF10170,EV022012",173,210,174,211,40,49,40,49,39,,"CCGT D1_Integrated Programme Schedule;CIVILS;CONSTRUCTION;Cooling Water System;Shaft F (Permanent)",1,2,0.0000031881,0.0156663276,0.0002034588,2,0.4,0.0001503957,0.0068493151,0.0061538462,0.0048125,0.0402088773,0.0006435006,0.0044843049,0.4,0.0283369572
1.4.2.12.8-59,SFF10170,"Shaft F - Excavate to below 7th layer of ring beam",7112,"CCGTD1_IPS",TT_Task,"58721",-,-,-,100,TK_Complete,31/01/2019,01/01/2019,06/02/2019,07/01/2019,"SFF10160 FS,EV011060 FS,SFF10010 SS","SFF10160,EV011060,SFF10010","SFF10180 FF,SFF10011 SF","SFF10180,SFF10011",183,215,184,216,42,50,42,50,46,,"CCGT D1_Integrated Programme Schedule;CIVILS;CONSTRUCTION;Cooling Water System;Shaft F (Permanent)",3,2,0.0000086948,0.014242116,0.0024415056,6,1.0,0.0002080635,0.0205479452,0.0061538462,0.013125,0.0365535248,0.0077220077,0.0134529148,1.0,0.051966231
1.4.2.12.8-60,SFF10180,"Shaft F - Intstall lagging plates and 7th layer of ring beam",7112,"CCGTD1_IPS",TT_Task,"58721",-,-,-,100,TK_Complete,26/01/2019,03/01/2019,05/02/2019,15/01/2019,"SFF10170 FF","SFF10170","","",182,215,183,217,42,50,42,50,44,,"CCGT D1_Integrated Programme Schedule;CIVILS;CONSTRUCTION;Cooling Water System;Shaft F (Permanent)",1,0,0.0,0.0,0.0026449644,10,1.0,0.0002584235,0.0068493151,0.0,0.0,0.0,0.0083655084,0.0224215247,1.0,0.0726011352
1.4.2.12.8-61,SFF10190,"Shaft F - Excavate to below 8th layer of ring beam",7112,"CCGTD1_IPS",TT_Task,"58721",-,-,-,100,TK_Complete,26/01/2019,15/01/2019,01/02/2019,20/01/2019,"","","SFF10200 FF","SFF10200",182,217,183,218,42,50,42,50,44,,"CCGT D1_Integrated Programme Schedule;CIVILS;CONSTRUCTION;Cooling Water System;Shaft F (Permanent)",0,1,0.0,0.0006103764,0.0,6,1.0,0.0000812387,0.0,0.0030769231,0.0,0.0015665796,0.0,0.0134529148,1.0,0.0
1.4.2.12.8-62,SFF10200,"Shaft F - Intstall lagging plates and 8th layer of ring beam",7112,"CCGTD1_IPS",TT_Task,"58721",-,-,-,100,TK_Complete,26/01/2019,16/01/2019,05/02/2019,25/01/2019,"SFF10190 FF","SFF10190","SFF10205 FS","SFF10205",182,217,183,219,42,50,42,51,44,,"CCGT D1_Integrated Programme Schedule;CIVILS;CONSTRUCTION;Cooling Water System;Shaft F (Permanent)",1,1,0.0000000828,0.0004069176,0.0002034588,10,1.0,0.0001503957,0.0068493151,0.0030769231,0.000125,0.0010443864,0.0006435006,0.0224215247,1.0,0.0283369572
1.4.2.12.8-63,SFF10205,"Shaft F - Excavate to below 9th layer of ring beam",7112,"CCGTD1_IPS",TT_Task,"58721",-,-,-,100,TK_Complete,01/04/2019,26/01/2019,06/04/2019,01/02/2019,"SFF10200 FS","SFF10200","SFF10210 FF","SFF10210",191,219,192,220,44,51,44,51,51,,"CCGT D1_Integrated Programme Schedule;CIVILS;CONSTRUCTION;Cooling Water System;Shaft F (Permanent)",1,1,0.0000000828,0.0002034588,0.0004069176,5,1.0,0.000209244,0.0068493151,0.0030769231,0.000125,0.0005221932,0.0012870013,0.0112107623,1.0,0.0524499399
1.4.2.12.8-64,SFF10210,"Shaft F - Intstall lagging plates and 9th layer of ring beam",7112,"CCGTD1_IPS",TT_Task,"58721",-,-,-,100,TK_Complete,01/04/2019,27/01/2019,10/04/2019,08/02/2019,"SFF10205 FF","SFF10205","","",191,219,193,221,44,51,45,51,51,,"CCGT D1_Integrated Programme Schedule;CIVILS;CONSTRUCTION;Cooling Water System;Shaft F (Permanent)",1,0,0.0,0.0,0.0006103764,9,0.6,0.0002593786,0.0068493151,0.0,0.0,0.0,0.0019305019,0.0201793722,0.6,0.0729924654
1.4.2.12.8-65,SFF10215,"Shaft F - Excavate to below 10th layer of ring beam",7112,"CCGTD1_IPS",TT_Task,"58721",-,-,-,100,TK_Complete,11/04/2019,08/02/2019,16/04/2019,14/02/2019,"SFF10055 FF","SFF10055","SFF10217 FF","SFF10217",193,221,193,221,45,51,45,51,53,,"CCGT D1_Integrated Programme Schedule;CIVILS;CONSTRUCTION;Cooling Water System;Shaft F (Permanent)",1,1,0.0000008695,0.0006103764,0.0014242116,5,0.6,0.0003576565,0.0068493151,0.0030769231,0.0013125,0.0015665796,0.0045045045,0.0112107623,0.6,0.1132616776
1.4.2.12.8-66,SFF10217,"Shaft F - Intstall lagging plates and 10th layer of ring beam",7112,"CCGTD1_IPS",TT_Task,"58721",-,-,-,100,TK_Complete,01/04/2019,09/02/2019,05/04/2019,21/02/2019,"SFF10215 FF","SFF10215","SFF10220 FS","SFF10220",191,221,192,222,44,51,44,52,51,,"CCGT D1_Integrated Programme Schedule;CIVILS;CONSTRUCTION;Cooling Water System;Shaft F (Permanent)",1,1,0.0000006625,0.0004069176,0.0016276704,4,0.2,0.0003859098,0.0068493151,0.0030769231,0.001,0.0010443864,0.0051480051,0.0089686099,0.2,0.1248383942
1.4.2.12.8-67,SFF10220,"Shaft F - Excavate to below 11th layer of ring beam",7112,"CCGTD1_IPS",TT_Task,"58721",-,-,-,100,TK_Complete,06/04/2019,22/02/2019,11/04/2019,28/02/2019,"SFF10217 FS","SFF10217","SFF10222 FF","SFF10222",192,223,193,223,44,52,45,52,53,,"CCGT D1_Integrated Programme Schedule;CIVILS;CONSTRUCTION;Cooling Water System;Shaft F (Permanent)",1,1,0.0000003726,0.0002034588,0.0018311292,5,0.8,0.0004099844,0.0068493151,0.0030769231,0.0005625,0.0005221932,0.0057915058,0.0112107623,0.8,0.1347029059
1.4.2.12.8-68,SFF10222,"Shaft F - Intstall lagging plates and 11th layer of ring beam",7112,"CCGTD1_IPS",TT_Task,"58721",-,-,-,100,TK_Complete,08/04/2019,23/02/2019,12/04/2019,08/03/2019,"SFF10220 FF","SFF10220","","",192,223,193,225,44,52,45,52,53,,"CCGT D1_Integrated Programme Schedule;CIVILS;CONSTRUCTION;Cooling Water System;Shaft F (Permanent)",1,0,0.0,0.0,0.002034588,4,0.0,0.000430422,0.0068493151,0.0,0.0,0.0,0.0064350064,0.0089686099,0.0,0.1430771791
1.4.2.12.8-69,SFF10225,"Shaft F - Excavate to below 12th layer of ring beam",7112,"CCGTD1_IPS",TT_Task,"58721",-,-,-,100,TK_Complete,01/04/2019,09/03/2019,16/04/2019,07/04/2019,"","","SFF10227 FF","SFF10227",191,225,193,229,44,52,45,53,51,,"CCGT D1_Integrated Programme Schedule;CIVILS;CONSTRUCTION;Cooling Water System;Shaft F (Permanent)",0,1,0.0,0.0166836216,0.0,15,0.0,0.0000812387,0.0,0.0030769231,0.0,0.0428198433,0.0,0.033632287,0.0,0.0
1.4.2.12.8-70,SFF10227,"Shaft F - Intstall lagging plates and 12th layer of ring beam",7112,"CCGTD1_IPS",TT_Task,"58721",-,-,-,100,TK_Complete,04/04/2019,16/03/2019,05/04/2019,09/04/2019,"SFF10225 FF","SFF10225","SFF10230 FS","SFF10230",192,226,192,229,44,52,44,53,52,,"CCGT D1_Integrated Programme Schedule;CIVILS;CONSTRUCTION;Cooling Water System;Shaft F (Permanent)",1,1,0.0000033537,0.0164801628,0.0002034588,1,0.0,0.0001503957,0.0068493151,0.0030769231,0.0050625,0.0422976501,0.0006435006,0.0022421525,0.0,0.0283369572
1.4.2.12.8-71,SFF10230,"Shaft F - Excavate to below 13th layer of ring beam",7112,"CCGTD1_IPS",TT_Task,"58721",-,-,-,100,TK_Complete,09/05/2019,10/04/2019,17/05/2019,06/05/2019,"SFF10227 FS","SFF10227","SFF10232 FF","SFF10232",197,229,198,233,46,53,46,54,58,,"CCGT D1_Integrated Programme Schedule;CIVILS;CONSTRUCTION;Cooling Water System;Shaft F (Permanent)",1,1,0.0000066246,0.016276704,0.0004069176,8,0.0,0.000209244,0.0068493151,0.0030769231,0.01,0.0417754569,0.0012870013,0.0179372197,0.0,0.0524499399
1.4.2.12.8-72,SFF10232,"Shaft F - Intstall lagging plates and 13th layer of ring beam",7112,"CCGTD1_IPS",TT_Task,"58721",-,-,-,100,TK_Complete,01/06/2019,01/05/2019,10/06/2019,09/05/2019,"SFF10230 FF","SFF10230","SFF10250 FS","SFF10250",200,232,201,233,46,54,47,54,61,,"CCGT D1_Integrated Programme Schedule;CIVILS;CONSTRUCTION;Cooling Water System;Shaft F (Permanent)",1,1,0.0000098127,0.0160732452,0.0006103764,9,1.0,0.0002593786,0.0068493151,0.0030769231,0.0148125,0.0412532637,0.0019305019,0.0201793722,1.0,0.0729924654
1.4.2.12.8-73,SFF30330,"Shaft F - ABWF (i.e. finishes, metal works, etc)",7112,"CCGTD1_IPS",TT_Task,"58721",-,-,-,100,TK_Complete,26/03/2020,26/03/2020,21/04/2020,21/04/2020,"DPT40030 FS","DPT40030","SFF30340 FF","SFF30340",243,279,246,283,56,65,57,66,89,,"CCGT D1_Integrated Programme Schedule;CIVILS;CONSTRUCTION;Cooling Water System;Shaft F (Permanent)",1,1,0.0000119657,0.0004069176,0.0368260427,26,1.0,0.0005841861,0.0068493151,0.0030769231,0.0180625,0.0010443864,0.1164736165,0.0582959641,1.0,0.206081744
1.4.2.12.8-74,SFF30340,"Shaft F - Building Services installation",7112,"CCGTD1_IPS",TT_Task,"58721",-,-,-,100,TK_Complete,26/03/2020,26/03/2020,21/04/2020,21/04/2020,"SFF30330 FF","SFF30330","SW1.1 FF","SW1.1",243,279,246,283,56,65,57,66,89,,"CCGT D1_Integrated Programme Schedule;CIVILS;CONSTRUCTION;Cooling Water System;Shaft F (Permanent)",1,1,0.000004513,0.0002034588,0.0370295015,26,1.0,0.0005683576,0.0068493151,0.0030769231,0.0068125,0.0005221932,0.1171171171,0.0582959641,1.0,0.1995960329
1.4.2.12.8-75,SFF10045,"Shaft F - BD Consent for Commencement of Excavation & ELS  (from +3.2 to -9.6 mPD)[RESUBMIT]",7112,"CCGTD1_IPS",TT_Task,"58721",-,-,-,100,TK_Complete,09/09/2018,13/08/2018,06/10/2018,07/09/2018,"EV012035 FS,SFF10041 FF,SFF-BA58b2 FS,EV029020 FS,EV029010 FS,SFF10043 FS","EV012035,SFF10041,SFF-BA58b2,EV029020,EV029010,SFF10043","SFF10070 FS","SFF10070",162,195,166,199,37,45,38,46,36,,"CCGT D1_Integrated Programme Schedule;CIVILS;CONSTRUCTION;Cooling Water System;Shaft F (Permanent)",6,1,0.0000038092,0.0008138352,0.0067141404,27,1.0,0.0007377715,0.0410958904,0.0030769231,0.00575,0.0020887728,0.0212355212,0.0605381166,1.0,0.2690130506
1.4.2.12.8-76,EV002010,"Event 002 - Shaft F Pre-drilling (5 nos.)",7112,"CCGTD1_IPS",TT_Task,"58721",-,-,-,100,TK_Complete,06/10/2017,06/10/2017,14/10/2017,17/10/2017,"","","","",114,151,115,152,26,35,26,35,12,,"CCGT D1_Integrated Programme Schedule;CIVILS;CONSTRUCTION;Cooling Water System;Shaft F (Permanent)",0,0,0.0,0.0,0.0,8,1.0,0.0000812387,0.0,0.0,0.0,0.0,0.0,0.0179372197,1.0,0.0
1.4.2.12.8-77,EV002020,"Event 002a - Shaft F Pre-drilling (4 nos. additional)",7112,"CCGTD1_IPS",TT_Task,"58721",-,-,-,100,TK_Complete,19/10/2017,19/10/2017,01/11/2017,01/11/2017,"","","SFF10020 FS","SFF10020",116,152,118,154,27,35,27,36,13,,"CCGT D1_Integrated Programme Schedule;CIVILS;CONSTRUCTION;Cooling Water System;Shaft F (Permanent)",0,1,0.0,0.0085452696,0.0,13,1.0,0.0000812387,0.0,0.0030769231,0.0,0.0219321149,0.0,0.0291479821,1.0,0.0
1.4.2.12.8-78,EV011010,"Event 011F - Trial jet grout consent condition imposed on shaft excavation",7112,"CCGTD1_IPS",TT_FinMile,"58721",-,-,-,100,TK_Complete,23/04/2018,26/02/2018,23/04/2018,26/02/2018,"","","","",142,171,142,171,33,40,33,40,25,,"CCGT D1_Integrated Programme Schedule;CIVILS;CONSTRUCTION;Cooling Water System;Shaft F (Permanent)",0,0,0.0,0.0,0.0,0,1.0,0.0000812387,0.0,0.0,0.0,0.0,0.0,0.0,1.0,0.0
1.4.2.12.8-79,EV011020,"Event 011F - Install trial get grout ( x3 nos.)",7112,"CCGTD1_IPS",TT_Task,"58721",-,-,-,100,TK_Complete,23/04/2018,07/03/2018,25/04/2018,09/03/2018,"","","EV011030 FS","EV011030",142,172,143,173,33,40,33,40,25,,"CCGT D1_Integrated Programme Schedule;CIVILS;CONSTRUCTION;Cooling Water System;Shaft F (Permanent)",0,1,0.0,0.0156663276,0.0,2,1.0,0.0000812387,0.0,0.0030769231,0.0,0.0402088773,0.0,0.0044843049,1.0,0.0
1.4.2.12.8-80,EV011030,"Event 011F - Core sample after 21 days from grout installed",7112,"CCGTD1_IPS",TT_Task,"58721",-,-,-,100,TK_Complete,07/05/2018,29/03/2018,19/05/2018,24/05/2018,"EV011020 FS","EV011020","EV011040 FS","EV011040",144,175,146,183,33,41,34,42,27,,"CCGT D1_Integrated Programme Schedule;CIVILS;CONSTRUCTION;Cooling Water System;Shaft F (Permanent)",1,1,0.0000031467,0.0154628688,0.0002034588,12,0.0,0.0001503957,0.0068493151,0.0030769231,0.00475,0.0396866841,0.0006435006,0.0269058296,0.0,0.0283369572
1.4.2.12.8-81,EV011040,"Event 011F - Test to early achievement of 28 day strength",7112,"CCGTD1_IPS",TT_Task,"58721",-,-,-,100,TK_Complete,26/07/2018,12/07/2018,28/07/2018,14/07/2018,"EV011030 FS","EV011030","EV011050 FS","EV011050",156,190,156,191,36,44,36,44,33,,"CCGT D1_Integrated Programme Schedule;CIVILS;CONSTRUCTION;Cooling Water System;Shaft F (Permanent)",1,1,0.0000062106,0.01525941,0.0004069176,2,1.0,0.000209244,0.0068493151,0.0030769231,0.009375,0.0391644909,0.0012870013,0.0044843049,1.0,0.0524499399
1.4.2.12.8-82,EV011050,"Event 011F - Formal test report issued for submission in 7 calendar days",7112,"CCGTD1_IPS",TT_Task,"58721",-,-,-,100,TK_Complete,02/08/2018,15/07/2018,08/08/2018,28/07/2018,"EV011040 FS,EV024010 FS","EV011040,EV024010","EV011060 FF,EV011052 FS","EV011060,EV011052",157,191,158,193,36,44,36,45,34,,"CCGT D1_Integrated Programme Schedule;CIVILS;CONSTRUCTION;Cooling Water System;Shaft F (Permanent)",2,2,0.0000122556,0.0150559512,0.0008138352,6,0.2,0.0003285356,0.0136986301,0.0061538462,0.0185,0.0386422977,0.0025740026,0.0134529148,0.2,0.1013294226
1.4.2.12.8-83,EV011060,"Event 011F - Shaft F - BA8 for full scale grout block and excav below -9.6 mPD",7112,"CCGTD1_IPS",TT_Task,"58721",-,-,-,100,TK_Complete,11/12/2018,05/10/2018,07/01/2019,22/11/2018,"EV011050 FF","EV011050","SFF10010 FS,SFF10170 FS","SFF10010,SFF10170",175,203,179,209,41,47,41,48,42,,"CCGT D1_Integrated Programme Schedule;CIVILS;CONSTRUCTION;Cooling Water System;Shaft F (Permanent)",1,2,0.0000149054,0.0146490336,0.001017294,27,0.0,0.0003609737,0.0068493151,0.0061538462,0.0225,0.0375979112,0.0032175032,0.0605381166,0.0,0.1146208703
1.4.2.12.8-84,SFF10011,"Shaft F /Grout Block - Complete grout at pre-determined core locations (AD TBC)",7112,"CCGTD1_IPS",TT_FinMile,"58721",-,-,-,100,TK_Complete,31/03/2019,25/02/2019,31/03/2019,25/02/2019,"SFF10170 SF","SFF10170","SFF10012 FS","SFF10012",191,223,191,223,44,52,44,52,49,,"CCGT D1_Integrated Programme Schedule;CIVILS;CONSTRUCTION;Cooling Water System;Shaft F (Permanent)",1,1,0.0000105166,0.0138351984,0.0026449644,0,1.0,0.0000812387,0.0068493151,0.0030769231,0.015875,0.0355091384,0.0083655084,0.0,1.0,0.0
1.4.2.12.8-85,SFF10012,"Shaft F /Grout Block - Core sample after 21 days from grout installed (AD TBC)",7112,"CCGTD1_IPS",TT_Task,"58721",-,-,-,100,TK_Complete,18/04/2019,26/02/2019,15/05/2019,18/03/2019,"SFF10011 FS","SFF10011","SFF10013 FS,RWPR0230 FS","SFF10013,RWPR0230",194,223,198,226,45,52,46,52,55,,"CCGT D1_Integrated Programme Schedule;CIVILS;CONSTRUCTION;Cooling Water System;Shaft F (Permanent)",1,2,0.0000127524,0.0136317396,0.0028484232,27,1.0,0.0001503957,0.0068493151,0.0061538462,0.01925,0.0349869452,0.009009009,0.0605381166,1.0,0.0283369572
1.4.2.12.8-86,SFF10013,"Shaf F /Grout Block - Test to early achievement of 28 day strength (AD TBC)",7112,"CCGTD1_IPS",TT_Task,"58721",-,-,-,100,TK_Complete,16/05/2019,19/03/2019,18/05/2019,21/03/2019,"SFF10012 FS","SFF10012","SFF10014 FS","SFF10014",198,226,198,226,46,52,46,52,59,,"CCGT D1_Integrated Programme Schedule;CIVILS;CONSTRUCTION;Cooling Water System;Shaft F (Permanent)",1,1,0.0000136633,0.0130213632,0.003051882,2,1.0,0.000094713,0.0068493151,0.0030769231,0.020625,0.0334203655,0.0096525097,0.0044843049,1.0,0.0055210463
1.4.2.12.8-87,SFF10014,"Shaft F/ Grout Block - Formal test report issued for submission in 7 calendar days (AD TBC)",7112,"CCGTD1_IPS",TT_Task,"58721",-,-,-,100,TK_Complete,19/05/2019,22/03/2019,25/05/2019,28/03/2019,"SFF10013 FS","SFF10013","SFF10015 FF","SFF10015",198,227,199,227,46,52,46,53,59,,"CCGT D1_Integrated Programme Schedule;CIVILS;CONSTRUCTION;Cooling Water System;Shaft F (Permanent)",1,1,0.0000156507,0.0128179044,0.0032553408,6,1.0,0.0001618676,0.0068493151,0.0030769231,0.023625,0.0328981723,0.0102960103,0.0134529148,1.0,0.033037537
1.4.2.12.8-88,SFF10015,"Shaft F - BA8 consent for pile wall opening",7112,"CCGTD1_IPS",TT_Task,"58721",-,-,-,100,TK_Complete,01/05/2019,18/04/2019,28/05/2019,31/05/2019,"SFF10014 FF,SFF10010 FF","SFF10014,SFF10010","SFF10280 FS,SFF10290 FS","SFF10280,SFF10290",196,230,199,237,45,53,46,55,56,,"CCGT D1_Integrated Programme Schedule;CIVILS;CONSTRUCTION;Cooling Water System;Shaft F (Permanent)",2,2,0.0000355453,0.0126144456,0.0034587996,27,0.0,0.0004052183,0.0136986301,0.0061538462,0.05365625,0.0323759791,0.0109395109,0.0605381166,0.0,0.1327500166
1.4.2.12.8-89,EV012010,"Event 012F - Settlement Assessment - BD monitoring team visit to site",7112,"CCGTD1_IPS",TT_FinMile,"58721",-,-,-,100,TK_Complete,23/04/2018,01/03/2018,23/04/2018,01/03/2018,"","","EV012020 FS","EV012020",142,171,142,171,33,40,33,40,25,,"CCGT D1_Integrated Programme Schedule;CIVILS;CONSTRUCTION;Cooling Water System;Shaft F (Permanent)",0,1,0.0,0.0022380468,0.0,0,1.0,0.0000812387,0.0,0.0030769231,0.0,0.0057441253,0.0,0.0,1.0,0.0
1.4.2.12.8-90,EV012020,"Event 012F - Settlement Assessment - Report preparation and submission to BD",7112,"CCGTD1_IPS",TT_Task,"58721",-,-,-,100,TK_Complete,23/04/2018,02/03/2018,03/05/2018,13/03/2018,"EV012010 FS","EV012010","EV012030 FF,EV012040 FS","EV012030,EV012040",142,172,144,173,33,40,33,40,25,,"CCGT D1_Integrated Programme Schedule;CIVILS;CONSTRUCTION;Cooling Water System;Shaft F (Permanent)",1,2,0.000000414,0.002034588,0.0002034588,10,1.0,0.0001503957,0.0068493151,0.0061538462,0.000625,0.0052219321,0.0006435006,0.0224215247,1.0,0.0283369572
1.4.2.12.8-91,EV012030,"Event 012F - Settlement Assessment - Report review by BD",7112,"CCGTD1_IPS",TT_Task,"58721",-,-,-,100,TK_Complete,04/05/2018,14/03/2018,17/05/2018,22/06/2018,"EV012020 FF,EV012060 FF,EV012065 FF,EV012070 FF,EV012080 FF,EV012085 FF,EV012075 FF","EV012020,EV012060,EV012065,EV012070,EV012080,EV012085,EV012075","EV012035 FF","EV012035",144,173,146,188,33,40,34,43,27,,"CCGT D1_Integrated Programme Schedule;CIVILS;CONSTRUCTION;Cooling Water System;Shaft F (Permanent)",7,1,0.0000024842,0.0012207528,0.002034588,13,0.0,0.00072169,0.0479452055,0.0030769231,0.00375,0.0031331593,0.0064350064,0.0291479821,0.0,0.2624236779
1.4.2.12.8-92,EV012050,"Event 012F - Settlement Assessment - Install ""screen wall"" as precautionary measure (i.e. JCG x17 nos.)",7112,"CCGTD1_IPS",TT_Task,"58721",-,-,-,100,TK_Complete,28/04/2018,29/03/2018,19/05/2018,13/04/2018,"EV012040 FS","EV012040","EV012060 FS","EV012060",143,175,146,178,33,41,34,41,26,,"CCGT D1_Integrated Programme Schedule;CIVILS;CONSTRUCTION;Cooling Water System;Shaft F (Permanent)",1,1,0.000000414,0.0016276704,0.0006103764,21,1.0,0.0001760388,0.0068493151,0.0030769231,0.000625,0.0041775457,0.0019305019,0.0470852018,1.0,0.0388441356
1.4.2.12.8-93,EV012040,"Event 012F - Request and Issue of ROI for ""screen wall"" and other precautionary measures",7112,"CCGTD1_IPS",TT_Task,"58721",-,-,-,100,TK_Complete,23/04/2018,14/03/2018,27/04/2018,28/03/2018,"EV012020 FS","EV012020","EV012050 FS","EV012050",142,173,143,175,33,40,33,41,25,,"CCGT D1_Integrated Programme Schedule;CIVILS;CONSTRUCTION;Cooling Water System;Shaft F (Permanent)",1,1,0.0000001656,0.0018311292,0.0004069176,4,0.0,0.0001113576,0.0068493151,0.0030769231,0.00025,0.0046997389,0.0012870013,0.0089686099,0.0,0.0123411623
1.4.2.12.8-94,EV012035,"Event 012F - Settlement Assessment - BD accept the report and resume to handle BA8 consent application",7112,"CCGTD1_IPS",TT_FinMile,"58721",-,-,-,100,TK_Complete,15/07/2018,22/06/2018,15/07/2018,22/06/2018,"EV012030 FF","EV012030","SFF10045 FS,EV019020 FF","SFF10045,EV019020",154,188,154,188,36,43,36,43,32,,"CCGT D1_Integrated Programme Schedule;CIVILS;CONSTRUCTION;Cooling Water System;Shaft F (Permanent)",1,1,0.0000022772,0.001017294,0.0022380468,0,1.0,0.0000812387,0.0068493151,0.0030769231,0.0034375,0.0026109661,0.0070785071,0.0,1.0,0.0
1.4.2.12.8-95,SFF10041,"Shaft F - Prepare and submit Stage 1 pumping test report",7112,"CCGTD1_IPS",TT_Task,"58721",-,-,-,100,TK_Complete,26/07/2018,23/07/2018,30/07/2018,07/08/2018,"SFF10040 FS,EV022008 FS","SFF10040,EV022008","SFF10045 FF","SFF10045",156,192,156,194,36,44,36,45,33,,"CCGT D1_Integrated Programme Schedule;CIVILS;CONSTRUCTION;Cooling Water System;Shaft F (Permanent)",2,1,0.0000014491,0.001017294,0.003051882,4,0.0,0.0004136658,0.0136986301,0.0030769231,0.0021875,0.0026109661,0.0096525097,0.0089686099,0.0,0.1362113564
1.4.2.12.8-96,SFF10025,"Shaft F - BD Consent for Commencement of Excavation & ELS  (above +3.2 mPD)",7112,"CCGTD1_IPS",TT_Task,"58721",-,-,-,100,TK_Complete,15/06/2018,03/05/2018,12/07/2018,06/07/2018,"SFF10020 FF","SFF10020","SFF10050 FS","SFF10050",150,180,154,190,35,42,35,44,30,,"CCGT D1_Integrated Programme Schedule;CIVILS;CONSTRUCTION;Cooling Water System;Shaft F (Permanent)",1,1,0.0000019874,0.0012207528,0.002034588,27,0.0,0.0001734803,0.0068493151,0.0030769231,0.003,0.0031331593,0.0064350064,0.0605381166,0.0,0.0377958312
1.4.2.12.8-97,SFF10035,"Shaft F - Install pump well and observation well",7112,"CCGTD1_IPS",TT_Task,"58721",-,-,-,100,TK_Complete,23/04/2018,17/03/2018,03/05/2018,26/03/2018,"","","SFF10040 FS","SFF10040",142,174,144,175,33,40,33,40,25,,"CCGT D1_Integrated Programme Schedule;CIVILS;CONSTRUCTION;Cooling Water System;Shaft F (Permanent)",0,1,0.0,0.0014242116,0.0,10,1.0,0.0000812387,0.0,0.0030769231,0.0,0.0036553525,0.0,0.0224215247,1.0,0.0
1.4.2.12.8-98,EV012060,"Event 012F - Settlement Assessment - Install TAM grout in between ""screen wall"" and Shaft F pile wall",7112,"CCGTD1_IPS",TT_Task,"58721",-,-,-,100,TK_Complete,28/04/2018,19/04/2018,08/05/2018,27/04/2018,"EV012050 FS","EV012050","EV012030 FF","EV012030",143,178,144,180,33,41,33,42,26,,"CCGT D1_Integrated Programme Schedule;CIVILS;CONSTRUCTION;Cooling Water System;Shaft F (Permanent)",1,1,0.0000005797,0.0014242116,0.0008138352,10,1.0,0.0002310985,0.0068493151,0.0030769231,0.000875,0.0036553525,0.0025740026,0.0224215247,1.0,0.0614047511
1.4.2.12.8-99,EV012065,"Event 012F - Settlement Assessment - ADMS to existing CWP (x32)",7112,"CCGTD1_IPS",TT_Task,"58721",-,-,-,100,TK_Complete,28/04/2018,02/05/2018,29/05/2018,15/06/2018,"","","EV012030 FF","EV012030",143,180,147,187,33,42,34,43,26,,"CCGT D1_Integrated Programme Schedule;CIVILS;CONSTRUCTION;Cooling Water System;Shaft F (Permanent)",0,1,0.0,0.0014242116,0.0,31,0.0,0.0000812387,0.0,0.0030769231,0.0,0.0036553525,0.0,0.0695067265,0.0,0.0
1.4.2.12.8-100,EV012070,"Event 012F - Settlement Assessment - SPT (x3)",7112,"CCGTD1_IPS",TT_Task,"58721",-,-,-,100,TK_Complete,28/04/2018,05/05/2018,26/05/2018,01/06/2018,"","","EV012030 FF","EV012030",143,181,147,185,33,42,34,43,26,,"CCGT D1_Integrated Programme Schedule;CIVILS;CONSTRUCTION;Cooling Water System;Shaft F (Permanent)",0,1,0.0,0.0014242116,0.0,28,1.0,0.0000812387,0.0,0.0030769231,0.0,0.0036553525,0.0,0.0627802691,1.0,0.0
1.4.2.12.8-101,EV012075,"Event 012F - Settlement Assessment - Trial Pile (x3)",7112,"CCGTD1_IPS",TT_Task,"58721",-,-,-,100,TK_Complete,28/04/2018,17/05/2018,14/05/2018,31/05/2018,"","","EV012030 FF","EV012030",143,182,145,184,33,42,34,43,26,,"CCGT D1_Integrated Programme Schedule;CIVILS;CONSTRUCTION;Cooling Water System;Shaft F (Permanent)",0,1,0.0,0.0014242116,0.0,16,1.0,0.0000812387,0.0,0.0030769231,0.0,0.0036553525,0.0,0.0358744395,1.0,0.0
1.4.2.12.8-102,EV012080,"Event 012F - Settlement Assessment - Exposing CWP pipe crown (x7)",7112,"CCGTD1_IPS",TT_Task,"58721",-,-,-,100,TK_Complete,28/04/2018,21/05/2018,08/05/2018,28/05/2018,"","","EV012030 FF","EV012030",143,183,144,184,33,42,33,43,26,,"CCGT D1_Integrated Programme Schedule;CIVILS;CONSTRUCTION;Cooling Water System;Shaft F (Permanent)",0,1,0.0,0.0014242116,0.0,10,1.0,0.0000812387,0.0,0.0030769231,0.0,0.0036553525,0.0,0.0224215247,1.0,0.0
1.4.2.12.8-103,EV012085,"Event 012F - Settlement Assessment - Full core sample (x1) of jet grout ""screen wall""",7112,"CCGTD1_IPS",TT_Task,"58721",-,-,-,100,TK_Complete,26/06/2018,26/05/2018,04/07/2018,08/06/2018,"","","EV012030 FF","EV012030",151,184,153,186,35,42,35,43,31,,"CCGT D1_Integrated Programme Schedule;CIVILS;CONSTRUCTION;Cooling Water System;Shaft F (Permanent)",0,1,0.0,0.0014242116,0.0,8,0.0,0.0000812387,0.0,0.0030769231,0.0,0.0036553525,0.0,0.0179372197,0.0,0.0
1.4.2.12.8-104,EV022010,"Event 022 - Stage 2 pump test as per AAA amendment",7112,"CCGTD1_IPS",TT_Task,"58721",-,-,-,100,TK_Complete,26/07/2018,23/07/2018,09/08/2018,15/08/2018,"SFF-BA58b3 FS,EV022008 FS","SFF-BA58b3,EV022008","SFF10050 FS,SFF10055 FS","SFF10050,SFF10055",156,192,158,195,36,44,36,45,33,,"CCGT D1_Integrated Programme Schedule;CIVILS;CONSTRUCTION;Cooling Water System;Shaft F (Permanent)",2,2,0.0000006625,0.0022380468,0.0004069176,14,0.4,0.0001455514,0.0136986301,0.0061538462,0.001,0.0057441253,0.0012870013,0.0313901345,0.4,0.0263520013
1.4.2.12.8-105,EV022006,"Event 022 - Additional monitoring points hand-marked by BD during AAA amendement",7112,"CCGTD1_IPS",TT_Task,"58721",-,-,-,100,TK_Complete,26/06/2018,23/06/2018,15/07/2018,04/07/2018,"SFF-BA58b3 FS","SFF-BA58b3","","",151,188,154,189,35,43,36,44,31,,"CCGT D1_Integrated Programme Schedule;CIVILS;CONSTRUCTION;Cooling Water System;Shaft F (Permanent)",1,0,0.0,0.0,0.0002034588,19,1.0,0.0000955211,0.0068493151,0.0,0.0,0.0,0.0006435006,0.0426008969,1.0,0.0058521977
1.4.2.12.8-106,EV022008,"Event 022 - Re-do Stage 1 pump test as per AAA amendment",7112,"CCGTD1_IPS",TT_Task,"58721",-,-,-,100,TK_Complete,28/06/2018,28/06/2018,09/07/2018,22/07/2018,"","","EV022010 FS,SFF10041 FS","EV022010,SFF10041",152,188,153,192,35,44,35,44,31,,"CCGT D1_Integrated Programme Schedule;CIVILS;CONSTRUCTION;Cooling Water System;Shaft F (Permanent)",0,2,0.0,0.0028484232,0.0,11,0.0,0.0000812387,0.0,0.0061538462,0.0,0.007310705,0.0,0.0246636771,0.0,0.0
1.4.2.12.8-107,EV024010,"Event 024 - Re-do full core of trial jet grout x1 no. as per AAA amendment",7112,"CCGTD1_IPS",TT_Task,"58721",-,-,-,100,TK_Complete,26/07/2018,09/07/2018,01/08/2018,11/07/2018,"","","EV011050 FS","EV011050",156,190,157,190,36,44,36,44,33,,"CCGT D1_Integrated Programme Schedule;CIVILS;CONSTRUCTION;Cooling Water System;Shaft F (Permanent)",0,1,0.0,0.01525941,0.0,6,1.0,0.0000812387,0.0,0.0030769231,0.0,0.0391644909,0.0,0.0134529148,1.0,0.0
1.4.2.12.8-108,SFF30265XX,"Shaft F - Install CW pipe bends / horizontal section of discharge pipeline above the top slab",7112,"CCGTD1_IPS",TT_Task,"58721",-,-,-,100,TK_Complete,01/01/2020,07/12/2019,07/01/2020,07/12/2019,"","","SFF30266XX FS","SFF30266XX",231,264,231,264,53,61,54,61,86,,"CCGT D1_Integrated Programme Schedule;CIVILS;CONSTRUCTION;Cooling Water System;Shaft F (Permanent)",0,1,0.0,0.001017294,0.0,6,1.0,0.0000812387,0.0,0.0030769231,0.0,0.0026109661,0.0,0.0134529148,1.0,0.0
1.4.2.12.8-109,SFF10300,"Shaft F - Install bulkhead and flooding the shaft (E drive)",7112,"CCGTD1_IPS",TT_Task,"58721",-,-,-,100,TK_Complete,18/11/2019,09/10/2019,19/11/2019,13/10/2019,"SFF10290 FS","SFF10290","SFF20040 FS","SFF20040",224,255,224,256,52,59,52,59,82,,"CCGT D1_Integrated Programme Schedule;CIVILS;CONSTRUCTION;Cooling Water System;Shaft F (Permanent)",1,1,0.000134749,0.0097660224,0.0174974568,1,0.8,0.0006401254,0.0068493151,0.0030769231,0.20340625,0.0250652742,0.0553410553,0.0022421525,0.8,0.2290027603
1.4.2.12.8-110,SFF20040,"Shaft F - Receive TBM and demob off site",7112,"CCGTD1_IPS",TT_Task,"58721",-,-,-,100,TK_Complete,01/01/2020,18/10/2019,06/01/2020,29/10/2019,"SFF10300 FS,SFF20030 FS","SFF10300,SFF20030","SFE10280 FF,SFF30262 FS,SFD10302 FS","SFE10280,SFF30262,SFD10302",231,257,231,258,53,59,54,60,86,,"CCGT D1_Integrated Programme Schedule;CIVILS;CONSTRUCTION;Cooling Water System;Shaft F (Permanent)",2,3,0.0002821883,0.0095625636,0.0362156663,5,0.6,0.0015200842,0.0136986301,0.0092307692,0.42596875,0.0245430809,0.1145431145,0.0112107623,0.6,0.5895642006
1.4.2.12.8-111,EV022012,"Event 022 - Re-do Stage 2 pump test at -9.6 mPD",7112,"CCGTD1_IPS",TT_Task,"58721",-,-,-,100,TK_Complete,26/12/2018,15/12/2018,15/01/2019,08/01/2019,"SFF10160 FS","SFF10160","SFF10055 FS","SFF10055",178,213,180,216,41,49,42,50,42,,"CCGT D1_Integrated Programme Schedule;CIVILS;CONSTRUCTION;Cooling Water System;Shaft F (Permanent)",1,1,0.000000414,0.001017294,0.0004069176,20,0.8,0.0001797044,0.0068493151,0.0030769231,0.000625,0.0026109661,0.0012870013,0.0448430493,0.8,0.0403461076
1.4.2.12.9,58720,"Shaft A",7112,"CCGTD1_IPS",WBS,"58715",,,,100,Complete,24/10/2017,24/10/2017,07/01/2020,19/12/2019,,,,,116,153,231,265,27,35,54,62,,,"CCGT D1_Integrated Programme Schedule;CIVILS;CONSTRUCTION;Cooling Water System"
1.4.2.12.9-1,EV028010,"Event 028 - Redo PPA#39 - install replacement pile #42, 43",7112,"CCGTD1_IPS",TT_Task,"58720",-,-,-,100,TK_Complete,29/11/2018,14/11/2018,05/12/2018,17/11/2018,"SFA10020 FS,EV028008 FS","SFA10020,EV028008","SFA10030 FF","SFA10030",174,208,175,209,40,48,40,48,41,,"CCGT D1_Integrated Programme Schedule;CIVILS;CONSTRUCTION;Cooling Water System;Shaft A",2,1,0.0000008281,0.001017294,0.0077314344,6,1.0,0.0003388413,0.0136986301,0.0030769231,0.00125,0.0026109661,0.0244530245,0.0134529148,1.0,0.1055521815
1.4.2.12.9-2,SFA10282,"Shaft A - Get the shaft ready for receiving TBM",7112,"CCGTD1_IPS",TT_Task,"58720",-,-,-,100,TK_Complete,01/08/2019,12/07/2019,05/08/2019,04/08/2019,"SFA10260 FS","SFA10260","SFA10280 FS","SFA10280",209,243,209,246,48,56,48,57,68,,"CCGT D1_Integrated Programme Schedule;CIVILS;CONSTRUCTION;Cooling Water System;Shaft A",1,1,0.0000495605,0.0128179044,0.0038657172,4,0.0,0.0002660421,0.0068493151,0.0030769231,0.0748125,0.0328981723,0.0122265122,0.0089686099,0.0,0.0757228151
1.4.2.12.9-3,EV004030,"Event 004 - Trial trench prior to piling",7112,"CCGTD1_IPS",TT_Task,"58720",-,-,-,100,TK_Complete,27/11/2017,21/12/2017,17/12/2017,10/01/2018,"EV004020 FS","EV004020","SFA10020 FS","SFA10020",121,161,124,164,28,37,29,38,15,,"CCGT D1_Integrated Programme Schedule;CIVILS;CONSTRUCTION;Cooling Water System;Shaft A",1,1,0.0000008695,0.0014242116,0.0006103764,20,1.0,0.0002593786,0.0068493151,0.0030769231,0.0013125,0.0036553525,0.0019305019,0.0448430493,1.0,0.0729924654
1.4.2.12.9-4,EV003010,"Event 003 - 6.6kVA Cable Strike at Shaft A",7112,"CCGTD1_IPS",TT_Task,"58720",-,-,-,100,TK_Complete,24/10/2017,24/10/2017,06/11/2017,24/11/2017,"","","EV004010 FS","EV004010",116,153,118,158,27,35,27,36,13,,"CCGT D1_Integrated Programme Schedule;CIVILS;CONSTRUCTION;Cooling Water System;Shaft A",0,1,0.0,0.002034588,0.0,13,0.0,0.0000812387,0.0,0.0030769231,0.0,0.0052219321,0.0,0.0291479821,0.0,0.0
1.4.2.12.9-5,EV004010,"Event 004 - Trial trench prior to pre-drill",7112,"CCGTD1_IPS",TT_Task,"58720",-,-,-,100,TK_Complete,07/11/2017,25/11/2017,09/11/2017,30/11/2017,"EV003010 FS","EV003010","EV004020 FS","EV004020",118,158,119,158,27,36,27,37,14,,"CCGT D1_Integrated Programme Schedule;CIVILS;CONSTRUCTION;Cooling Water System;Shaft A",1,1,0.0000003726,0.0018311292,0.0002034588,2,0.4,0.0001503957,0.0068493151,0.0030769231,0.0005625,0.0046997389,0.0006435006,0.0044843049,0.4,0.0283369572
1.4.2.12.9-6,EV004020,"Event 004 - Pre-drill to verifiy rock head level of Shaft A",7112,"CCGTD1_IPS",TT_Task,"58720",-,-,-,100,TK_Complete,02/12/2017,01/12/2017,21/12/2017,20/12/2017,"EV004010 FS","EV004010","EV004030 FS","EV004030",122,159,125,161,28,37,29,37,15,,"CCGT D1_Integrated Programme Schedule;CIVILS;CONSTRUCTION;Cooling Water System;Shaft A",1,1,0.0000006625,0.0016276704,0.0004069176,19,1.0,0.000209244,0.0068493151,0.0030769231,0.001,0.0041775457,0.0012870013,0.0426008969,1.0,0.0524499399
1.4.2.12.9-7,SFA10020,"Shaft A - 610 Dia. Pipe Pile Wall @ 750 c/c (41nos, total driving 1558m)",7112,"CCGTD1_IPS",TT_Task,"58720",-,-,-,100,TK_Complete,15/03/2018,12/02/2018,26/04/2018,04/10/2018,"SFA-BA58 FF,PROSC020 FS,SFAt1BA8 FS,GEOT0010 FS,SFA-BA58b FF,EV004030 FS,SFAt1BA8a FS,EV013040 FS,EV004040 FS,SFA_BA58a FF,EV016080 FS","SFA-BA58,PROSC020,SFAt1BA8,GEOT0010,SFA-BA58b,EV004030,SFAt1BA8a,EV013040,EV004040,SFA_BA58a,EV016080","SFA10030 FS,EV028010 FS","SFA10030,EV028010",137,169,143,202,32,39,33,47,22,,"CCGT D1_Integrated Programme Schedule;CIVILS;CONSTRUCTION;Cooling Water System;Shaft A",11,2,0.0000077839,0.0012207528,0.0067141404,42,0.0,0.0009959329,0.0753424658,0.0061538462,0.01175,0.0031331593,0.0212355212,0.0941704036,0.0,0.3747942011
1.4.2.12.9-8,SFA10030,"Shaft A - Grout Curtain (behind pipe pile wall) (total drilling 1271m)",7112,"CCGTD1_IPS",TT_Task,"58720",-,-,-,100,TK_Complete,29/11/2018,03/11/2018,20/12/2018,18/12/2018,"SFA10020 FS,EV028010 FF","SFA10020,EV028010","SFA10040 FS,SFA10035 FS","SFA10040,SFA10035",174,207,177,213,40,48,41,49,41,,"CCGT D1_Integrated Programme Schedule;CIVILS;CONSTRUCTION;Cooling Water System;Shaft A",2,2,0.000006045,0.0008138352,0.0079348932,21,0.0,0.001029368,0.0136986301,0.0061538462,0.009125,0.0020887728,0.0250965251,0.0470852018,0.0,0.3884941827
1.4.2.12.9-9,SFA10040,"Shaft A - Pumping Test and Report Submission",7112,"CCGTD1_IPS",TT_Task,"58720",-,-,-,100,TK_Complete,29/12/2018,22/12/2018,18/01/2019,23/01/2019,"SFA10030 FS,SFA10035 FS","SFA10030,SFA10035","SFA10050 FS","SFA10050",178,214,181,218,41,49,42,51,43,,"CCGT D1_Integrated Programme Schedule;CIVILS;CONSTRUCTION;Cooling Water System;Shaft A",2,1,0.0000029811,0.0004069176,0.0083418108,20,0.0,0.0010156226,0.0136986301,0.0030769231,0.0045,0.0010443864,0.0263835264,0.0448430493,0.0,0.3828620081
1.4.2.12.9-10,SFA10060,"Shaft A - Intstall 1st layer of ring beam",7112,"CCGTD1_IPS",TT_Task,"58720",-,-,-,100,TK_Complete,08/04/2019,11/02/2019,10/04/2019,19/02/2019,"SFA10050 FS","SFA10050","","",192,221,193,222,44,51,45,51,53,,"CCGT D1_Integrated Programme Schedule;CIVILS;CONSTRUCTION;Cooling Water System;Shaft A",1,0,0.0,0.0,0.0089521872,2,0.6,0.0009419145,0.0068493151,0.0,0.0,0.0,0.0283140283,0.0044843049,0.6,0.3526602843
1.4.2.12.9-11,SFA10050,"Shaft A - Excavate to below 1st layer of ring beam / install lagging plate",7112,"CCGTD1_IPS",TT_Task,"58720",-,-,-,100,TK_Complete,01/04/2019,06/02/2019,06/04/2019,10/02/2019,"SFA_BA58 FS,SFA10040 FS","SFA_BA58,SFA10040","SFA10060 FS","SFA10060",191,220,192,221,44,51,44,51,51,,"CCGT D1_Integrated Programme Schedule;CIVILS;CONSTRUCTION;Cooling Water System;Shaft A",2,1,0.0000017804,0.0002034588,0.0087487284,5,1.0,0.0010089535,0.0136986301,0.0030769231,0.0026875,0.0005221932,0.0276705277,0.0112107623,1.0,0.380129381
1.4.2.12.9-12,SFA10080,"Shaft A - Intstall lagging plates and 2nd layer of ring beam",7112,"CCGTD1_IPS",TT_Task,"58720",-,-,-,100,TK_Complete,01/04/2019,26/02/2019,06/04/2019,03/03/2019,"SFA10070 FF","SFA10070","SFA10090 FS","SFA10090",191,223,192,224,44,52,44,52,51,,"CCGT D1_Integrated Programme Schedule;CIVILS;CONSTRUCTION;Cooling Water System;Shaft A",1,1,0.0000001656,0.0004069176,0.0004069176,5,1.0,0.000209244,0.0068493151,0.0030769231,0.00025,0.0010443864,0.0012870013,0.0112107623,1.0,0.0524499399
1.4.2.12.9-13,SFA10070,"Shaft A - Excavate to below 2nd layer of ring beam",7112,"CCGTD1_IPS",TT_Task,"58720",-,-,-,100,TK_Complete,01/04/2019,19/02/2019,06/04/2019,25/02/2019,"SFA10045 FS","SFA10045","SFA10080 FF","SFA10080",191,222,192,223,44,51,44,52,51,,"CCGT D1_Integrated Programme Schedule;CIVILS;CONSTRUCTION;Cooling Water System;Shaft A",1,1,0.0000001242,0.0006103764,0.0002034588,5,0.8,0.0001503957,0.0068493151,0.0030769231,0.0001875,0.0015665796,0.0006435006,0.0112107623,0.8,0.0283369572
1.4.2.12.9-14,SFA10250,"Shaft A - Excavate to final excavation level -22 mPD / Install lagging plate",7112,"CCGTD1_IPS",TT_Task,"58720",-,-,-,100,TK_Complete,06/06/2019,31/05/2019,06/06/2019,31/05/2019,"SFA10233XX FS,SFA10215 FS","SFA10233XX,SFA10215","SFA10260 FS,SFA10220 FS","SFA10260,SFA10220",201,237,201,237,46,55,46,55,62,,"CCGT D1_Integrated Programme Schedule;CIVILS;CONSTRUCTION;Cooling Water System;Shaft A",2,2,0.0000437225,0.0134282808,0.0032553408,0,1.0,0.0000812387,0.0136986301,0.0061538462,0.066,0.034464752,0.0102960103,0.0,1.0,0.0
1.4.2.12.9-15,SFA10100,"Shaft A - Intstall lagging plates and 3rd layer of ring beam",7112,"CCGTD1_IPS",TT_Task,"58720",-,-,-,100,TK_Complete,02/04/2019,13/03/2019,06/04/2019,17/03/2019,"SFA10090 FF","SFA10090","","",191,225,192,226,44,52,44,52,52,,"CCGT D1_Integrated Programme Schedule;CIVILS;CONSTRUCTION;Cooling Water System;Shaft A",1,0,0.0,0.0,0.0008138352,4,1.0,0.0003021254,0.0068493151,0.0,0.0,0.0,0.0025740026,0.0089686099,1.0,0.0905078876
1.4.2.12.9-16,SFA10110,"Shaft A - Excavate to below 4th layer of ring beam",7112,"CCGTD1_IPS",TT_Task,"58720",-,-,-,100,TK_Complete,01/04/2019,18/03/2019,05/04/2019,26/03/2019,"","","SFA10120 FF","SFA10120",191,226,192,227,44,52,44,53,51,,"CCGT D1_Integrated Programme Schedule;CIVILS;CONSTRUCTION;Cooling Water System;Shaft A",0,1,0.0,0.0006103764,0.0,4,0.8,0.0000812387,0.0,0.0030769231,0.0,0.0015665796,0.0,0.0089686099,0.8,0.0
1.4.2.12.9-17,SFA10120,"Shaft A - Intstall lagging plates and 4th layer of ring beam",7112,"CCGTD1_IPS",TT_Task,"58720",-,-,-,100,TK_Complete,02/04/2019,26/03/2019,06/04/2019,05/04/2019,"SFA10110 FF","SFA10110","SFA10130 FS","SFA10130",191,227,192,229,44,53,44,53,52,,"CCGT D1_Integrated Programme Schedule;CIVILS;CONSTRUCTION;Cooling Water System;Shaft A",1,1,0.0000000828,0.0004069176,0.0002034588,4,0.6,0.0001503957,0.0068493151,0.0030769231,0.000125,0.0010443864,0.0006435006,0.0089686099,0.6,0.0283369572
1.4.2.12.9-18,SFA10130,"Shaft A - Excavate to below 5th layer of ring beam",7112,"CCGTD1_IPS",TT_Task,"58720",-,-,-,100,TK_Complete,01/05/2019,11/04/2019,06/05/2019,21/04/2019,"SFA10120 FS,SFA10010 FS,EV011120 FS","SFA10120,SFA10010,EV011120","SFA10140 FF","SFA10140",196,229,196,231,45,53,45,53,56,,"CCGT D1_Integrated Programme Schedule;CIVILS;CONSTRUCTION;Cooling Water System;Shaft A",3,1,0.0000005797,0.0002034588,0.0028484232,5,0.8,0.0005053829,0.0205479452,0.0030769231,0.000875,0.0005221932,0.009009009,0.0112107623,0.8,0.1737922604
1.4.2.12.9-19,SFA10140,"Shaft A - Intstall lagging plates and 5th layer of ring beam",7112,"CCGTD1_IPS",TT_Task,"58720",-,-,-,100,TK_Complete,02/05/2019,21/04/2019,07/05/2019,23/04/2019,"SFA10130 FF","SFA10130","","",196,231,196,231,45,53,45,54,56,,"CCGT D1_Integrated Programme Schedule;CIVILS;CONSTRUCTION;Cooling Water System;Shaft A",1,0,0.0,0.0,0.003051882,5,1.0,0.0005115216,0.0068493151,0.0,0.0,0.0,0.0096525097,0.0112107623,1.0,0.1763075833
1.4.2.12.9-20,SFA10090,"Shaft A - Excavate to below 3rd layer of ring beam",7112,"CCGTD1_IPS",TT_Task,"58720",-,-,-,100,TK_Complete,01/04/2019,04/03/2019,05/04/2019,12/03/2019,"SFA10080 FS","SFA10080","SFA10100 FF","SFA10100",191,224,192,225,44,52,44,52,51,,"CCGT D1_Integrated Programme Schedule;CIVILS;CONSTRUCTION;Cooling Water System;Shaft A",1,1,0.0000001242,0.0002034588,0.0006103764,4,0.6,0.0002593786,0.0068493151,0.0030769231,0.0001875,0.0005221932,0.0019305019,0.0089686099,0.6,0.0729924654
1.4.2.12.9-21,SFA10150,"Shaft A - Excavate to below 6th layer of ring beam",7112,"CCGTD1_IPS",TT_Task,"58720",-,-,-,100,TK_Complete,08/05/2019,24/04/2019,13/05/2019,29/04/2019,"","","SFA10160 FF","SFA10160",197,231,197,232,45,54,46,54,58,,"CCGT D1_Integrated Programme Schedule;CIVILS;CONSTRUCTION;Cooling Water System;Shaft A",0,1,0.0,0.0006103764,0.0,5,1.0,0.0000812387,0.0,0.0030769231,0.0,0.0015665796,0.0,0.0112107623,1.0,0.0
1.4.2.12.9-22,SFA10160,"Shaft A - Intstall lagging plates and 6th layer of ring beam",7112,"CCGTD1_IPS",TT_Task,"58720",-,-,-,100,TK_Complete,09/05/2019,29/04/2019,14/05/2019,02/05/2019,"SFA10150 FF","SFA10150","SFA10170 FS","SFA10170",197,232,197,232,46,54,46,54,58,,"CCGT D1_Integrated Programme Schedule;CIVILS;CONSTRUCTION;Cooling Water System;Shaft A",1,1,0.0000000828,0.0004069176,0.0002034588,5,1.0,0.0001503957,0.0068493151,0.0030769231,0.000125,0.0010443864,0.0006435006,0.0112107623,1.0,0.0283369572
1.4.2.12.9-23,SFA10170,"Shaft A - Excavate to below 7th layer of ring beam",7112,"CCGTD1_IPS",TT_Task,"58720",-,-,-,100,TK_Complete,04/06/2019,03/05/2019,08/06/2019,09/05/2019,"SFA10160 FS","SFA10160","SFA10180 FF","SFA10180",200,233,201,233,46,54,47,54,61,,"CCGT D1_Integrated Programme Schedule;CIVILS;CONSTRUCTION;Cooling Water System;Shaft A",1,1,0.0000000828,0.0002034588,0.0004069176,4,0.6,0.000209244,0.0068493151,0.0030769231,0.000125,0.0005221932,0.0012870013,0.0089686099,0.6,0.0524499399
1.4.2.12.9-24,SFA10180,"Shaft A - Intstall lagging plates and 7th layer of ring beam",7112,"CCGTD1_IPS",TT_Task,"58720",-,-,-,100,TK_Complete,05/06/2019,09/05/2019,10/06/2019,10/05/2019,"SFA10170 FF","SFA10170","","",201,233,201,234,46,54,47,54,61,,"CCGT D1_Integrated Programme Schedule;CIVILS;CONSTRUCTION;Cooling Water System;Shaft A",1,0,0.0,0.0,0.0006103764,5,1.0,0.0002593786,0.0068493151,0.0,0.0,0.0,0.0019305019,0.0112107623,1.0,0.0729924654
1.4.2.12.9-25,SFA10190,"Shaft A - Excavate to below 8th layer of ring beam",7112,"CCGTD1_IPS",TT_Task,"58720",-,-,-,100,TK_Complete,11/06/2019,11/05/2019,14/06/2019,15/05/2019,"","","SFA10200 FF","SFA10200",201,234,202,234,47,54,47,54,62,,"CCGT D1_Integrated Programme Schedule;CIVILS;CONSTRUCTION;Cooling Water System;Shaft A",0,1,0.0,0.0166836216,0.0,3,1.0,0.0000812387,0.0,0.0030769231,0.0,0.0428198433,0.0,0.0067264574,1.0,0.0
1.4.2.12.9-26,SFA10200,"Shaft A - Intstall lagging plates and 8thnd layer of ring beam",7112,"CCGTD1_IPS",TT_Task,"58720",-,-,-,100,TK_Complete,12/06/2019,15/05/2019,15/06/2019,19/05/2019,"SFA10190 FF","SFA10190","SFA10205 FS","SFA10205",202,234,202,235,47,54,47,54,63,,"CCGT D1_Integrated Programme Schedule;CIVILS;CONSTRUCTION;Cooling Water System;Shaft A",1,1,0.0000033537,0.0164801628,0.0002034588,3,1.0,0.0001503957,0.0068493151,0.0030769231,0.0050625,0.0422976501,0.0006435006,0.0067264574,1.0,0.0283369572
1.4.2.12.9-27,SFA10010,"Shaft A - Grout Blocks (at receiving area) (total drilling 830m)",7112,"CCGTD1_IPS",TT_Task,"58720",-,-,-,100,TK_Complete,26/01/2019,11/01/2019,27/03/2019,02/02/2019,"EV011120 FS","EV011120","SFA10130 FS,SFA10011 FF","SFA10130,SFA10011",182,217,191,220,42,50,44,51,44,,"CCGT D1_Integrated Programme Schedule;CIVILS;CONSTRUCTION;Cooling Water System;Shaft A",1,2,0.0000309701,0.014242116,0.0022380468,60,1.0,0.0003235603,0.0068493151,0.0061538462,0.04675,0.0365535248,0.0070785071,0.134529148,1.0,0.0992908043
1.4.2.12.9-28,SFA10260,"Shaft A - Cast bottom skin wall, base slab and receiving platform",7112,"CCGTD1_IPS",TT_Task,"58720",-,-,-,100,TK_Complete,01/08/2019,03/06/2019,14/08/2019,11/07/2019,"SFA10250 FS,SFA10220 FF","SFA10250,SFA10220","SFA10282 FS","SFA10282",209,237,211,242,48,55,49,56,68,,"CCGT D1_Integrated Programme Schedule;CIVILS;CONSTRUCTION;Cooling Water System;Shaft A",2,1,0.0000476973,0.0130213632,0.0036622584,13,0.0,0.0002171272,0.0136986301,0.0030769231,0.072,0.0334203655,0.0115830116,0.0291479821,0.0,0.055680038
1.4.2.12.9-29,SFA20010,"Shaft A - Receive TBM and demob off site",7112,"CCGTD1_IPS",TT_Task,"58720",-,-,-,100,TK_Complete,01/11/2019,22/08/2019,09/11/2019,24/09/2019,"SFF20020 FS","SFF20020","SFA20020 FS,SFF20022 SS","SFA20020,SFF20022",222,248,223,253,51,58,52,59,81,,"CCGT D1_Integrated Programme Schedule;CIVILS;CONSTRUCTION;Cooling Water System;Shaft A",1,2,0.0000453373,0.0032553408,0.0170905392,8,0.0,0.0006995075,0.0068493151,0.0061538462,0.0684375,0.0083550914,0.0540540541,0.0179372197,0.0,0.2533344475
1.4.2.12.9-30,SFA20020,"Shaft A - Install 1st vertical CW pipe section",7112,"CCGTD1_IPS",TT_Task,"58720",-,-,-,100,TK_Complete,01/11/2019,10/10/2019,06/11/2019,13/10/2019,"SFA20010 FS,SFF20022 FS,PROMA013 FS","SFA20010,SFF20022,PROMA013","SFA20030 FS","SFA20030",222,255,223,256,51,59,52,59,81,,"CCGT D1_Integrated Programme Schedule;CIVILS;CONSTRUCTION;Cooling Water System;Shaft A",3,1,0.0000216128,0.0028484232,0.0177009156,5,1.0,0.0007033019,0.0205479452,0.0030769231,0.032625,0.007310705,0.055984556,0.0112107623,1.0,0.2548891969
1.4.2.12.9-31,SFA20030,"Shaft A - Backfill to -18 mPD approx. 1m below the next pipe joint",7112,"CCGTD1_IPS",TT_Task,"58720",-,-,-,100,TK_Complete,01/11/2019,14/10/2019,05/11/2019,14/10/2019,"SFA20020 FS","SFA20020","SFA20050 FS","SFA20050",222,256,222,256,51,59,52,59,81,,"CCGT D1_Integrated Programme Schedule;CIVILS;CONSTRUCTION;Cooling Water System;Shaft A",1,1,0.000018549,0.0026449644,0.0179043744,4,1.0,0.0006935322,0.0068493151,0.0030769231,0.028,0.0067885117,0.0566280566,0.0089686099,1.0,0.250886112
1.4.2.12.9-32,SFA20050,"Shaft A - Install remaining vertiicle CW pipe sections / fittings / headers",7112,"CCGTD1_IPS",TT_Task,"58720",-,-,-,100,TK_Complete,01/11/2019,24/10/2019,18/11/2019,09/11/2019,"SFA20030 FS","SFA20030","SFA20060 FF,SFF20023XX FS","SFA20060,SFF20023XX",222,257,224,260,51,60,52,60,81,,"CCGT D1_Integrated Programme Schedule;CIVILS;CONSTRUCTION;Cooling Water System;Shaft A",1,2,0.0000154023,0.0024415056,0.0181078332,17,1.0,0.0006811627,0.0068493151,0.0061538462,0.02325,0.0062663185,0.0572715573,0.0381165919,1.0,0.245817733
1.4.2.12.9-33,SFA20060,"Shaft A - Backfill from -18 to +0.4 mPD",7112,"CCGTD1_IPS",TT_Task,"58720",-,-,-,100,TK_Complete,01/11/2019,28/10/2019,18/11/2019,12/11/2019,"SFA20050 FF","SFA20050","SFA20210 FS","SFA20210",222,258,224,260,51,60,52,60,81,,"CCGT D1_Integrated Programme Schedule;CIVILS;CONSTRUCTION;Cooling Water System;Shaft A",1,1,0.0000113033,0.0008138352,0.018311292,17,1.0,0.0006726665,0.0068493151,0.0030769231,0.0170625,0.0020887728,0.0579150579,0.0381165919,1.0,0.2423364205
1.4.2.12.9-34,SFA20210,"Shaft A - Construct rocket slab & open pipe pile wall",7112,"CCGTD1_IPS",TT_Task,"58720",-,-,-,100,TK_Complete,01/01/2020,13/11/2019,07/01/2020,09/12/2019,"SFA20060 FS","SFA20060","SFA20220 FS,CW1.2 FF,PPS10350 FS","SFA20220,CW1.2,PPS10350",231,260,231,264,53,60,54,61,86,,"CCGT D1_Integrated Programme Schedule;CIVILS;CONSTRUCTION;Cooling Water System;Shaft A",1,3,0.0000077011,0.0006103764,0.0185147508,6,0.0,0.0006403075,0.0068493151,0.0092307692,0.011625,0.0015665796,0.0585585586,0.0134529148,0.0,0.2290773716
1.4.2.12.9-35,SFA20220,"Shaft A - Backfill to ground level",7112,"CCGTD1_IPS",TT_Task,"58720",-,-,-,100,TK_Complete,01/01/2020,18/12/2019,02/01/2020,19/12/2019,"SFA20210 FS,PPS10350 FS","SFA20210,PPS10350","","",231,265,231,265,53,62,53,62,86,,"CCGT D1_Integrated Programme Schedule;CIVILS;CONSTRUCTION;Cooling Water System;Shaft A",2,0,0.0,0.0,0.0189216684,1,1.0,0.0005794738,0.0136986301,0.0,0.0,0.0,0.0598455598,0.0022421525,1.0,0.2041508794
1.4.2.12.9-36,SFA10205,"Shaft A - Excavate to below 9th layer of ring beam",7112,"CCGTD1_IPS",TT_Task,"58720",-,-,-,100,TK_Complete,17/06/2019,20/05/2019,22/06/2019,25/05/2019,"SFA10200 FS","SFA10200","SFA10210 FF","SFA10210",202,235,203,236,47,54,47,55,63,,"CCGT D1_Integrated Programme Schedule;CIVILS;CONSTRUCTION;Cooling Water System;Shaft A",1,1,0.0000066246,0.016276704,0.0004069176,5,1.0,0.000209244,0.0068493151,0.0030769231,0.01,0.0417754569,0.0012870013,0.0112107623,1.0,0.0524499399
1.4.2.12.9-37,SFA10210,"Shaft A - Intstall lagging plates and 9th layer of ring beam",7112,"CCGTD1_IPS",TT_Task,"58720",-,-,-,100,TK_Complete,18/06/2019,25/05/2019,24/06/2019,28/05/2019,"SFA10205 FF","SFA10205","SFA10212XX FS,SFA10215 FS","SFA10212XX,SFA10215",202,236,203,236,47,55,47,55,63,,"CCGT D1_Integrated Programme Schedule;CIVILS;CONSTRUCTION;Cooling Water System;Shaft A",1,2,0.0000098127,0.0160732452,0.0006103764,6,1.0,0.0002593786,0.0068493151,0.0061538462,0.0148125,0.0412532637,0.0019305019,0.0134529148,1.0,0.0729924654
1.4.2.12.9-38,SFA10212XX,"Shaft A - 9th layer of skin wall achieve required strength",7112,"CCGTD1_IPS",TT_Task,"58720",-,-,-,100,TK_Complete,01/09/2019,29/05/2019,01/09/2019,29/05/2019,"SFA10210 FS","SFA10210","SFA10215XX FS","SFA10215XX",213,236,213,236,49,55,49,55,74,,"CCGT D1_Integrated Programme Schedule;CIVILS;CONSTRUCTION;Cooling Water System;Shaft A",1,1,0.0000016562,0.0156663276,0.0008138352,0,1.0,0.0000812387,0.0068493151,0.0030769231,0.0025,0.0402088773,0.0025740026,0.0,1.0,0.0
1.4.2.12.9-39,SFA10215XX,"Shaft A - Excavate 10th layer further down 2m",7112,"CCGTD1_IPS",TT_Task,"58720",-,-,-,100,TK_Complete,02/09/2019,29/05/2019,02/09/2019,29/05/2019,"SFA10212XX FS","SFA10212XX","SFA10217XX FS","SFA10217XX",213,236,213,236,49,55,49,55,75,,"CCGT D1_Integrated Programme Schedule;CIVILS;CONSTRUCTION;Cooling Water System;Shaft A",1,1,0.0000046372,0.0154628688,0.001017294,0,1.0,0.0000812387,0.0068493151,0.0030769231,0.007,0.0396866841,0.0032175032,0.0,1.0,0.0
1.4.2.12.9-40,SFA10217XX,"Shaft A - Construct 10th layer of 250mm skin wall",7112,"CCGTD1_IPS",TT_Task,"58720",-,-,-,100,TK_Complete,02/09/2019,29/05/2019,02/09/2019,29/05/2019,"SFA10215XX FS","SFA10215XX","SFA10220XX FS","SFA10220XX",213,236,213,236,49,55,49,55,75,,"CCGT D1_Integrated Programme Schedule;CIVILS;CONSTRUCTION;Cooling Water System;Shaft A",1,1,0.0000075355,0.01525941,0.0012207528,0,1.0,0.0000812387,0.0068493151,0.0030769231,0.011375,0.0391644909,0.0038610039,0.0,1.0,0.0
1.4.2.12.9-41,SFA10220XX,"Shaft A - Excavate 11th layer further down 2m",7112,"CCGTD1_IPS",TT_Task,"58720",-,-,-,100,TK_Complete,02/09/2019,29/05/2019,02/09/2019,29/05/2019,"SFA10217XX FS","SFA10217XX","SFA10222XX FS","SFA10222XX",213,236,213,236,49,55,49,55,75,,"CCGT D1_Integrated Programme Schedule;CIVILS;CONSTRUCTION;Cooling Water System;Shaft A",1,1,0.000010351,0.0150559512,0.0014242116,0,1.0,0.0000812387,0.0068493151,0.0030769231,0.015625,0.0386422977,0.0045045045,0.0,1.0,0.0
1.4.2.12.9-42,SFA10222XX,"Shaft A - Construct 11th layer of 250mm skin wall",7112,"CCGTD1_IPS",TT_Task,"58720",-,-,-,100,TK_Complete,02/09/2019,29/05/2019,02/09/2019,29/05/2019,"SFA10220XX FS","SFA10220XX","SFA10223XX FS","SFA10223XX",213,236,213,236,49,55,49,55,75,,"CCGT D1_Integrated Programme Schedule;CIVILS;CONSTRUCTION;Cooling Water System;Shaft A",1,1,0.0000130836,0.0148524924,0.0016276704,0,1.0,0.0000812387,0.0068493151,0.0030769231,0.01975,0.0381201044,0.0051480051,0.0,1.0,0.0
1.4.2.12.9-43,SFA10223XX,"Shaft A - 11th layer of skin wall achieve required strength",7112,"CCGTD1_IPS",TT_Task,"58720",-,-,-,100,TK_Complete,02/09/2019,29/05/2019,02/09/2019,29/05/2019,"SFA10222XX FS","SFA10222XX","SFA10225XX FS","SFA10225XX",213,236,213,236,49,55,49,55,75,,"CCGT D1_Integrated Programme Schedule;CIVILS;CONSTRUCTION;Cooling Water System;Shaft A",1,1,0.0000157335,0.0146490336,0.0018311292,0,1.0,0.0000812387,0.0068493151,0.0030769231,0.02375,0.0375979112,0.0057915058,0.0,1.0,0.0
1.4.2.12.9-44,SFA10225XX,"Shaft A - Excavate 12th layer further down 2m",7112,"CCGTD1_IPS",TT_Task,"58720",-,-,-,100,TK_Complete,02/09/2019,29/05/2019,02/09/2019,29/05/2019,"SFA10223XX FS","SFA10223XX","SFA10227XX FS","SFA10227XX",213,236,213,236,49,55,49,55,75,,"CCGT D1_Integrated Programme Schedule;CIVILS;CONSTRUCTION;Cooling Water System;Shaft A",1,1,0.0000183005,0.0144455748,0.002034588,0,1.0,0.0000812387,0.0068493151,0.0030769231,0.027625,0.037075718,0.0064350064,0.0,1.0,0.0
1.4.2.12.9-45,SFA10227XX,"Shaft A - Construct 12th layer of 250mm skin wall",7112,"CCGTD1_IPS",TT_Task,"58720",-,-,-,100,TK_Complete,02/09/2019,29/05/2019,02/09/2019,29/05/2019,"SFA10225XX FS","SFA10225XX","SFA10230XX FS","SFA10230XX",213,236,213,236,49,55,49,55,75,,"CCGT D1_Integrated Programme Schedule;CIVILS;CONSTRUCTION;Cooling Water System;Shaft A",1,1,0.0000207848,0.014242116,0.0022380468,0,1.0,0.0000812387,0.0068493151,0.0030769231,0.031375,0.0365535248,0.0070785071,0.0,1.0,0.0
1.4.2.12.9-46,SFA10230XX,"Shaft A - Excavate 13th layer further down 2m",7112,"CCGTD1_IPS",TT_Task,"58720",-,-,-,100,TK_Complete,02/09/2019,29/05/2019,02/09/2019,29/05/2019,"SFA10227XX FS","SFA10227XX","SFA10232XX FS","SFA10232XX",213,236,213,236,49,55,49,55,75,,"CCGT D1_Integrated Programme Schedule;CIVILS;CONSTRUCTION;Cooling Water System;Shaft A",1,1,0.0000231862,0.0140386572,0.0024415056,0,1.0,0.0000812387,0.0068493151,0.0030769231,0.035,0.0360313316,0.0077220077,0.0,1.0,0.0
1.4.2.12.9-47,SFA10232XX,"Shaft A - Construct 13th layer of 250mm skin wall",7112,"CCGTD1_IPS",TT_Task,"58720",-,-,-,100,TK_Complete,02/09/2019,29/05/2019,02/09/2019,29/05/2019,"SFA10230XX FS","SFA10230XX","SFA10233XX FS","SFA10233XX",213,236,213,236,49,55,49,55,75,,"CCGT D1_Integrated Programme Schedule;CIVILS;CONSTRUCTION;Cooling Water System;Shaft A",1,1,0.0000255048,0.0138351984,0.0026449644,0,1.0,0.0000812387,0.0068493151,0.0030769231,0.0385,0.0355091384,0.0083655084,0.0,1.0,0.0
1.4.2.12.9-48,SFA10233XX,"Shaft A - 13th layer of skin wall achieve required strength",7112,"CCGTD1_IPS",TT_Task,"58720",-,-,-,100,TK_Complete,02/09/2019,29/05/2019,02/09/2019,29/05/2019,"SFA10232XX FS","SFA10232XX","SFA10250 FS","SFA10250",213,236,213,236,49,55,49,55,75,,"CCGT D1_Integrated Programme Schedule;CIVILS;CONSTRUCTION;Cooling Water System;Shaft A",1,1,0.0000277406,0.0136317396,0.0028484232,0,1.0,0.0000812387,0.0068493151,0.0030769231,0.041875,0.0349869452,0.009009009,0.0,1.0,0.0
1.4.2.12.9-49,SFA10045,"Shaft A - BD Consent for Excavation & ELS",7112,"CCGTD1_IPS",TT_Task,"58720",-,-,-,100,TK_Complete,26/01/2019,23/01/2019,22/02/2019,18/02/2019,"","","SFA10070 FS","SFA10070",182,218,186,222,42,51,43,51,44,,"CCGT D1_Integrated Programme Schedule;CIVILS;CONSTRUCTION;Cooling Water System;Shaft A",0,1,0.0,0.0008138352,0.0,27,1.0,0.0000812387,0.0,0.0030769231,0.0,0.0020887728,0.0,0.0605381166,1.0,0.0
1.4.2.12.9-50,EV004040,"Event 004a - Protection to existing cables and removal of existing light post",7112,"CCGTD1_IPS",TT_Task,"58720",-,-,-,100,TK_Complete,26/02/2018,08/01/2018,10/03/2018,20/01/2018,"","","SFA10020 FS","SFA10020",134,164,136,166,31,38,31,38,19,,"CCGT D1_Integrated Programme Schedule;CIVILS;CONSTRUCTION;Cooling Water System;Shaft A",0,1,0.0,0.0014242116,0.0,12,1.0,0.0000812387,0.0,0.0030769231,0.0,0.0036553525,0.0,0.0269058296,1.0,0.0
1.4.2.12.9-51,EV013010,"Event 013 - Moblization for piling works start",7112,"CCGTD1_IPS",TT_Mile,"58720",-,-,-,100,TK_Complete,26/02/2018,16/01/2018,26/02/2018,16/01/2018,"","","","",134,165,134,165,31,38,31,38,19,,"CCGT D1_Integrated Programme Schedule;CIVILS;CONSTRUCTION;Cooling Water System;Shaft A",0,0,0.0,0.0,0.0,0,1.0,0.0000812387,0.0,0.0,0.0,0.0,0.0,0.0,1.0,0.0
1.4.2.12.9-52,EV013020,"Event 013 - Crane damaged and repaired",7112,"CCGTD1_IPS",TT_Task,"58720",-,-,-,100,TK_Complete,27/02/2018,19/01/2018,07/03/2018,27/01/2018,"","","","",134,166,136,167,31,38,31,39,19,,"CCGT D1_Integrated Programme Schedule;CIVILS;CONSTRUCTION;Cooling Water System;Shaft A",0,0,0.0,0.0,0.0,8,1.0,0.0000812387,0.0,0.0,0.0,0.0,0.0,0.0179372197,1.0,0.0
1.4.2.12.9-53,EV013030,"Event 013 - Mobilization for piling works complete",7112,"CCGTD1_IPS",TT_FinMile,"58720",-,-,-,100,TK_Complete,26/02/2018,03/02/2018,26/02/2018,03/02/2018,"","","","",134,168,134,168,31,39,31,39,19,,"CCGT D1_Integrated Programme Schedule;CIVILS;CONSTRUCTION;Cooling Water System;Shaft A",0,0,0.0,0.0,0.0,0,1.0,0.0000812387,0.0,0.0,0.0,0.0,0.0,0.0,1.0,0.0
1.4.2.12.9-54,EV013040,"Event 014 - Clarifying extent of monitoring and instrumentation prerequisite to start of Shaft A piling works",7112,"CCGTD1_IPS",TT_Task,"58720",-,-,-,100,TK_Complete,26/02/2018,04/02/2018,05/03/2018,11/02/2018,"","","SFA10020 FS","SFA10020",134,168,135,169,31,39,31,39,19,,"CCGT D1_Integrated Programme Schedule;CIVILS;CONSTRUCTION;Cooling Water System;Shaft A",0,1,0.0,0.0014242116,0.0,7,1.0,0.0000812387,0.0,0.0030769231,0.0,0.0036553525,0.0,0.0156950673,1.0,0.0
1.4.2.12.9-55,EV011070,"Event 011A - Trial jet grout consent condition imposed on shaft excavation",7112,"CCGTD1_IPS",TT_FinMile,"58720",-,-,-,100,TK_Complete,23/04/2018,26/02/2018,23/04/2018,26/02/2018,"","","","",142,171,142,171,33,40,33,40,25,,"CCGT D1_Integrated Programme Schedule;CIVILS;CONSTRUCTION;Cooling Water System;Shaft A",0,0,0.0,0.0,0.0,0,1.0,0.0000812387,0.0,0.0,0.0,0.0,0.0,0.0,1.0,0.0
1.4.2.12.9-56,EV011080,"Event 011A - Install trial jet grout ( x3 nos.)",7112,"CCGTD1_IPS",TT_Task,"58720",-,-,-,100,TK_Complete,27/08/2018,27/07/2018,30/08/2018,31/07/2018,"SFA_BA58b FS","SFA_BA58b","EV011090 FS","EV011090",160,193,161,193,37,45,37,45,35,,"CCGT D1_Integrated Programme Schedule;CIVILS;CONSTRUCTION;Cooling Water System;Shaft A",1,1,0.0000186318,0.01525941,0.0012207528,3,1.0,0.0000926402,0.0068493151,0.0030769231,0.028125,0.0391644909,0.0038610039,0.0067264574,1.0,0.00467172
1.4.2.12.9-57,EV011090,"Event 011A - Core sample after 21 days from grout installed",7112,"CCGTD1_IPS",TT_Task,"58720",-,-,-,100,TK_Complete,26/11/2018,03/09/2018,03/12/2018,12/10/2018,"EV011080 FS","EV011080","EV011100 FS","EV011100",173,198,174,204,40,46,40,47,39,,"CCGT D1_Integrated Programme Schedule;CIVILS;CONSTRUCTION;Cooling Water System;Shaft A",1,1,0.0000214472,0.0150559512,0.0014242116,7,0.0,0.0001601063,0.0068493151,0.0030769231,0.032375,0.0386422977,0.0045045045,0.0156950673,0.0,0.0323158559
1.4.2.12.9-58,EV011100,"Event 011A - Test to early achievement of 28 day strength",7112,"CCGTD1_IPS",TT_Task,"58720",-,-,-,100,TK_Complete,04/12/2018,02/10/2018,06/12/2018,11/10/2018,"EV011090 FS","EV011090","EV011110 FS","EV011110",174,202,175,203,40,47,40,47,41,,"CCGT D1_Integrated Programme Schedule;CIVILS;CONSTRUCTION;Cooling Water System;Shaft A",1,1,0.0000241799,0.0148524924,0.0016276704,2,0.2,0.0002175195,0.0068493151,0.0030769231,0.0365,0.0381201044,0.0051480051,0.0044843049,0.2,0.055840792
1.4.2.12.9-59,EV011110,"Event 011A - Formal test report issued for submission in 7 calendar days",7112,"CCGTD1_IPS",TT_Task,"58720",-,-,-,100,TK_Complete,26/11/2018,13/11/2018,02/12/2018,30/11/2018,"EV011100 FS","EV011100","EV011120 FF","EV011120",173,208,174,211,40,48,40,49,39,,"CCGT D1_Integrated Programme Schedule;CIVILS;CONSTRUCTION;Cooling Water System;Shaft A",1,1,0.0000268297,0.0146490336,0.0018311292,6,0.0,0.0002664357,0.0068493151,0.0030769231,0.0405,0.0375979112,0.0057915058,0.0134529148,0.0,0.075884109
1.4.2.12.9-60,EV011120,"Event 011A - Shaft A - BA8 for full scale grout block and excav below -4.6 mPD",7112,"CCGTD1_IPS",TT_Task,"58720",-,-,-,100,TK_Complete,21/02/2019,30/11/2018,20/03/2019,24/12/2018,"EV011110 FF","EV011110","SFA10010 FS,SFA10130 FS","SFA10010,SFA10130",186,211,190,214,43,49,44,50,47,,"CCGT D1_Integrated Programme Schedule;CIVILS;CONSTRUCTION;Cooling Water System;Shaft A",1,2,0.0000293968,0.0144455748,0.002034588,27,1.0,0.0003081486,0.0068493151,0.0061538462,0.044375,0.037075718,0.0064350064,0.0605381166,1.0,0.0929759141
1.4.2.12.9-61,SFA10011,"Shaft A /Grout Block - Complete grout at pre-determined core locations",7112,"CCGTD1_IPS",TT_FinMile,"58720",-,-,-,100,TK_Complete,01/04/2019,21/01/2019,01/04/2019,21/01/2019,"SFA10010 FF","SFA10010","SFA10012 FS","SFA10012",191,218,191,218,44,50,44,50,51,,"CCGT D1_Integrated Programme Schedule;CIVILS;CONSTRUCTION;Cooling Water System;Shaft A",1,1,0.0000332887,0.0136317396,0.0024415056,0,1.0,0.0000812387,0.0068493151,0.0030769231,0.05025,0.0349869452,0.0077220077,0.0,1.0,0.0
1.4.2.12.9-62,SFA10012,"Shaft A /Grout Block - Full core samples",7112,"CCGTD1_IPS",TT_Task,"58720",-,-,-,100,TK_Complete,01/04/2019,22/01/2019,15/04/2019,18/02/2019,"SFA10011 FS","SFA10011","SFA10013 FS","SFA10013",191,218,193,222,44,51,45,51,51,,"CCGT D1_Integrated Programme Schedule;CIVILS;CONSTRUCTION;Cooling Water System;Shaft A",1,1,0.0000355246,0.0134282808,0.0026449644,14,0.0,0.0001503957,0.0068493151,0.0030769231,0.053625,0.034464752,0.0083655084,0.0313901345,0.0,0.0283369572
1.4.2.12.9-63,SFA10013,"Shaf A /Grout Block - Grout test to 28 day strength",7112,"CCGTD1_IPS",TT_Task,"58720",-,-,-,100,TK_Complete,31/03/2019,08/02/2019,02/04/2019,02/03/2019,"SFA10012 FS","SFA10012","SFA10014 FS","SFA10014",191,221,191,224,44,51,44,52,49,,"CCGT D1_Integrated Programme Schedule;CIVILS;CONSTRUCTION;Cooling Water System;Shaft A",1,1,0.0000376776,0.013224822,0.0028484232,2,0.0,0.000209244,0.0068493151,0.0030769231,0.056875,0.0339425587,0.009009009,0.0044843049,0.0,0.0524499399
1.4.2.12.9-64,SFA10014,"Shaft A/ Grout Block - Jet grout assessment report",7112,"CCGTD1_IPS",TT_Task,"58720",-,-,-,100,TK_Complete,31/03/2019,03/03/2019,06/04/2019,08/05/2019,"SFA10013 FS","SFA10013","SFA10015 FS","SFA10015",191,224,192,233,44,52,44,54,49,,"CCGT D1_Integrated Programme Schedule;CIVILS;CONSTRUCTION;Cooling Water System;Shaft A",1,1,0.0000397478,0.0130213632,0.003051882,6,0.0,0.0002593786,0.0068493151,0.0030769231,0.06,0.0334203655,0.0096525097,0.0134529148,0.0,0.0729924654
1.4.2.12.9-65,SFA10015,"Shaft A - BA8 consent for pile wall opening",7112,"CCGTD1_IPS",TT_Task,"58720",-,-,-,100,TK_Complete,01/06/2019,11/05/2019,28/06/2019,05/06/2019,"SFA10014 FS","SFA10014","SFA10280 FS","SFA10280",200,234,204,237,46,54,47,55,61,,"CCGT D1_Integrated Programme Schedule;CIVILS;CONSTRUCTION;Cooling Water System;Shaft A",1,1,0.0000417351,0.0128179044,0.0032553408,27,1.0,0.0003021254,0.0068493151,0.0030769231,0.063,0.0328981723,0.0102960103,0.0605381166,1.0,0.0905078876
1.4.2.12.9-66,SFA10215,"Shaft A - Excavate to below 10th layer of ring beam",7112,"CCGTD1_IPS",TT_Task,"58720",-,-,-,100,TK_Complete,01/06/2019,28/05/2019,05/06/2019,30/05/2019,"SFA10210 FS","SFA10210","SFA10250 FS","SFA10250",200,236,201,236,46,55,46,55,61,,"CCGT D1_Integrated Programme Schedule;CIVILS;CONSTRUCTION;Cooling Water System;Shaft A",1,1,0.0000110962,0.0136317396,0.0008138352,4,1.0,0.0003021254,0.0068493151,0.0030769231,0.01675,0.0349869452,0.0025740026,0.0089686099,1.0,0.0905078876
1.4.2.12.9-67,SFA10220,"Shaft A - Intstall lagging plates and 10th layer of ring beam",7112,"CCGTD1_IPS",TT_Task,"58720",-,-,-,100,TK_Complete,01/06/2019,01/06/2019,05/06/2019,09/06/2019,"SFA10250 FS","SFA10250","SFA10260 FF","SFA10260",200,237,201,238,46,55,46,55,61,,"CCGT D1_Integrated Programme Schedule;CIVILS;CONSTRUCTION;Cooling Water System;Shaft A",1,1,0.0,0.013224822,0.0034587996,4,0.8,0.000097511,0.0068493151,0.0030769231,0.0,0.0339425587,0.0109395109,0.0089686099,0.8,0.0066675193
1.4.2.12.9-68,SFA10280,"Shaft A - Break through pipe pile wall and at the TBM receiving areas",7112,"CCGTD1_IPS",TT_Task,"58720",-,-,-,100,TK_Complete,06/09/2019,05/08/2019,10/09/2019,09/08/2019,"SFA10015 FS,SFA10282 FS","SFA10015,SFA10282","SFA10284 FS","SFA10284",214,246,214,247,50,57,50,57,76,,"CCGT D1_Integrated Programme Schedule;CIVILS;CONSTRUCTION;Cooling Water System;Shaft A",2,1,0.0000949806,0.0126144456,0.0075279756,4,1.0,0.0005651341,0.0136986301,0.0030769231,0.143375,0.0323759791,0.0238095238,0.0089686099,1.0,0.1982752049
1.4.2.12.9-69,EV016010,"Event 016 - Settlement oberved at adjacent bund wall and piling suspended",7112,"CCGTD1_IPS",TT_Mile,"58720",-,-,-,100,TK_Complete,26/02/2018,19/03/2018,26/02/2018,19/03/2018,"","","","",134,174,134,174,31,40,31,40,19,,"CCGT D1_Integrated Programme Schedule;CIVILS;CONSTRUCTION;Cooling Water System;Shaft A",0,0,0.0,0.0,0.0,0,1.0,0.0000812387,0.0,0.0,0.0,0.0,0.0,0.0,1.0,0.0
1.4.2.12.9-70,EV016020,"Event 016 - Piling rigs demobilized and site clear for preventive grouting",7112,"CCGTD1_IPS",TT_Task,"58720",-,-,-,100,TK_Complete,26/02/2018,19/03/2018,04/03/2018,25/03/2018,"","","","",134,174,135,175,31,40,31,40,19,,"CCGT D1_Integrated Programme Schedule;CIVILS;CONSTRUCTION;Cooling Water System;Shaft A",0,0,0.0,0.0,0.0,6,1.0,0.0000812387,0.0,0.0,0.0,0.0,0.0,0.0134529148,1.0,0.0
1.4.2.12.9-71,EV016030,"Event 016 - Preventive grouting (18 nos. out of 20 critical completed)",7112,"CCGTD1_IPS",TT_Task,"58720",-,-,-,100,TK_Complete,26/02/2018,26/03/2018,06/03/2018,03/04/2018,"","","","",134,175,135,176,31,40,31,41,19,,"CCGT D1_Integrated Programme Schedule;CIVILS;CONSTRUCTION;Cooling Water System;Shaft A",0,0,0.0,0.0,0.0,8,1.0,0.0000812387,0.0,0.0,0.0,0.0,0.0,0.0179372197,1.0,0.0
1.4.2.12.9-72,EV016040,"Event 016 - Further settlement oberved and  grouting suspended",7112,"CCGTD1_IPS",TT_Mile,"58720",-,-,-,100,TK_Complete,26/02/2018,04/04/2018,26/02/2018,04/04/2018,"","","","",134,176,134,176,31,41,31,41,19,,"CCGT D1_Integrated Programme Schedule;CIVILS;CONSTRUCTION;Cooling Water System;Shaft A",0,0,0.0,0.0,0.0,0,1.0,0.0000812387,0.0,0.0,0.0,0.0,0.0,0.0,1.0,0.0
1.4.2.12.9-73,EV016050,"Event 016 - Remedial grouting to bund wall (5 nos.)",7112,"CCGTD1_IPS",TT_Task,"58720",-,-,-,100,TK_Complete,17/04/2018,17/04/2018,25/04/2018,19/04/2018,"","","EV016060 FS","EV016060",141,178,143,178,33,41,33,41,24,,"CCGT D1_Integrated Programme Schedule;CIVILS;CONSTRUCTION;Cooling Water System;Shaft A",0,1,0.0,0.002034588,0.0,8,1.0,0.0000812387,0.0,0.0030769231,0.0,0.0052219321,0.0,0.0179372197,1.0,0.0
1.4.2.12.9-74,EV016060,"Event 016 - Preventive grouting (the last remaining 2 nos.)",7112,"CCGTD1_IPS",TT_Task,"58720",-,-,-,100,TK_Complete,30/05/2018,21/04/2018,31/05/2018,23/04/2018,"EV016050 FS","EV016050","EV016070 FS","EV016070",148,179,148,179,34,41,34,41,29,,"CCGT D1_Integrated Programme Schedule;CIVILS;CONSTRUCTION;Cooling Water System;Shaft A",1,1,0.0000003726,0.0018311292,0.0002034588,1,0.6,0.0001503957,0.0068493151,0.0030769231,0.0005625,0.0046997389,0.0006435006,0.0022421525,0.6,0.0283369572
1.4.2.12.9-75,EV016070,"Event 016 - Remobilize piling rig",7112,"CCGTD1_IPS",TT_Task,"58720",-,-,-,100,TK_Complete,31/03/2019,26/01/2019,02/04/2019,28/01/2019,"EV016060 FS,EV021010 FS","EV016060,EV021010","EV016080 FS","EV016080",191,219,191,219,44,51,44,51,49,,"CCGT D1_Integrated Programme Schedule;CIVILS;CONSTRUCTION;Cooling Water System;Shaft A",2,1,0.0000009937,0.0016276704,0.0006103764,2,1.0,0.0002140135,0.0136986301,0.0030769231,0.0015,0.0041775457,0.0019305019,0.0044843049,1.0,0.0544042128
1.4.2.12.9-76,EV016080,"Event 016 - Resume Shaft A piling works",7112,"CCGTD1_IPS",TT_Mile,"58720",-,-,-,100,TK_Complete,29/08/2018,30/07/2018,29/08/2018,30/07/2018,"EV016070 FS,EV021015 FS,EV017080 FS","EV016070,EV021015,EV017080","SFA10020 FS","SFA10020",161,193,161,193,37,45,37,45,35,,"CCGT D1_Integrated Programme Schedule;CIVILS;CONSTRUCTION;Cooling Water System;Shaft A",3,1,0.000001739,0.0014242116,0.0012207528,0,1.0,0.0000812387,0.0205479452,0.0030769231,0.002625,0.0036553525,0.0038610039,0.0,1.0,0.0
1.4.2.12.9-77,EV016045,"Event 016 - Awaiting engineering solution and management direction",7112,"CCGTD1_IPS",TT_Task,"58720",-,-,-,100,TK_Complete,17/04/2018,04/04/2018,25/04/2018,16/04/2018,"","","","",141,176,143,178,33,41,33,41,24,,"CCGT D1_Integrated Programme Schedule;CIVILS;CONSTRUCTION;Cooling Water System;Shaft A",0,0,0.0,0.0,0.0,8,0.6,0.0000812387,0.0,0.0,0.0,0.0,0.0,0.0179372197,0.6,0.0
1.4.2.12.9-78,EV021010,"Event 021A - AAA amendment for Shaft A /Pump Station/ Diversion Culvert",7112,"CCGTD1_IPS",TT_Task,"58720",-,-,-,100,TK_Complete,01/06/2018,23/05/2018,30/06/2018,03/07/2018,"","","EV016070 FS,SFA_BA58b FS","EV016070,SFA_BA58b",148,183,152,189,34,42,35,44,29,,"CCGT D1_Integrated Programme Schedule;CIVILS;CONSTRUCTION;Cooling Water System;Shaft A",0,2,0.0,0.0286876907,0.0,29,0.0,0.0000812387,0.0,0.0061538462,0.0,0.0736292428,0.0,0.0650224215,0.0,0.0
1.4.2.12.9-79,EV023010,"Event 023 - Re-seqeuncing Submission (Alternative) for Shaft A /Pump Station/ Diversion Culvert (BA5)[WITHDRAWN]",7112,"CCGTD1_IPS",TT_Task,"58720",-,-,-,100,TK_Complete,26/07/2018,29/06/2018,23/09/2018,23/08/2018,"","","PPS10045 FS,EV027010 FS","PPS10045,EV027010",156,189,164,196,36,44,38,45,33,,"CCGT D1_Integrated Programme Schedule;CIVILS;CONSTRUCTION;Cooling Water System;Shaft A",0,2,0.0,0.0105798576,0.0,59,1.0,0.0000812387,0.0,0.0061538462,0.0,0.027154047,0.0,0.1322869955,1.0,0.0
1.4.2.12.9-80,EV021015,"Event 021A - Additional monitoring points hand-marked on approval drawings by BD",7112,"CCGTD1_IPS",TT_Task,"58720",-,-,-,100,TK_Complete,26/06/2018,23/06/2018,08/07/2018,03/07/2018,"","","EV016080 FS","EV016080",151,188,153,189,35,43,35,44,31,,"CCGT D1_Integrated Programme Schedule;CIVILS;CONSTRUCTION;Cooling Water System;Shaft A",0,1,0.0,0.0016276704,0.0,12,1.0,0.0000812387,0.0,0.0030769231,0.0,0.0041775457,0.0,0.0269058296,1.0,0.0
1.4.2.12.9-81,EV025000,"Event 025A - Preventive grouting stopped as it's being legalized via AAA amendment",7112,"CCGTD1_IPS",TT_Task,"58720",-,-,-,100,TK_Complete,26/06/2018,23/06/2018,29/06/2018,26/06/2018,"","","","",151,188,152,188,35,43,35,44,31,,"CCGT D1_Integrated Programme Schedule;CIVILS;CONSTRUCTION;Cooling Water System;Shaft A",0,0,0.0,0.0,0.0,3,1.0,0.0000812387,0.0,0.0,0.0,0.0,0.0,0.0067264574,1.0,0.0
1.4.2.12.9-82,EV017080,"Event 017A - Advanced Preventive Grouting (42 nos.)",7112,"CCGTD1_IPS",TT_Task,"58720",-,-,-,100,TK_Complete,26/06/2018,29/05/2018,27/07/2018,29/06/2018,"","","EV016080 FS","EV016080",151,184,156,189,35,43,36,44,31,,"CCGT D1_Integrated Programme Schedule;CIVILS;CONSTRUCTION;Cooling Water System;Shaft A",0,1,0.0,0.0016276704,0.0,31,1.0,0.0000812387,0.0,0.0030769231,0.0,0.0041775457,0.0,0.0695067265,1.0,0.0
1.4.2.12.9-83,EV028002,"Event 028 - Redo PPA#39 - 5th amendment (Type II)",7112,"CCGTD1_IPS",TT_Task,"58720",-,-,-,100,TK_Complete,26/11/2018,13/07/2018,25/12/2018,13/08/2018,"","","EV028004 FS","EV028004",173,191,177,195,40,44,41,45,39,,"CCGT D1_Integrated Programme Schedule;CIVILS;CONSTRUCTION;Cooling Water System;Shaft A",0,1,0.0,0.0018311292,0.0,29,1.0,0.0000812387,0.0,0.0030769231,0.0,0.0046997389,0.0,0.0650224215,1.0,0.0
1.4.2.12.9-84,EV028004,"Event 028 - Redo PPA #39 - install 508 dia. pile [FAILED]",7112,"CCGTD1_IPS",TT_Task,"58720",-,-,-,100,TK_Complete,26/11/2018,13/10/2018,26/11/2018,13/10/2018,"EV028002 FS","EV028002","EV028006 FS","EV028006",173,204,173,204,40,47,40,47,39,,"CCGT D1_Integrated Programme Schedule;CIVILS;CONSTRUCTION;Cooling Water System;Shaft A",1,1,0.0000003312,0.0016276704,0.0002034588,0,1.0,0.0000812387,0.0068493151,0.0030769231,0.0005,0.0041775457,0.0006435006,0.0,1.0,0.0
1.4.2.12.9-85,EV028006,"Event 028 - Redo PPA#39 - remedial proposal added to 6th amendment",7112,"CCGTD1_IPS",TT_Task,"58720",-,-,-,100,TK_Complete,27/11/2018,15/10/2018,08/12/2018,26/10/2018,"EV028004 FS","EV028004","EV028008 FF","EV028008",173,204,175,206,40,47,40,48,40,,"CCGT D1_Integrated Programme Schedule;CIVILS;CONSTRUCTION;Cooling Water System;Shaft A",1,1,0.0000005797,0.0014242116,0.0004069176,11,1.0,0.0001503957,0.0068493151,0.0030769231,0.000875,0.0036553525,0.0012870013,0.0246636771,1.0,0.0283369572
1.4.2.12.9-86,EV028008,"Event 028 - Redo PPA#39 - 6th amendment due by 03Nov18; approval deemed",7112,"CCGTD1_IPS",TT_FinMile,"58720",-,-,-,100,TK_Complete,26/11/2018,03/11/2018,26/11/2018,03/11/2018,"EV028006 FF","EV028006","EV028010 FS","EV028010",173,207,173,207,40,48,40,48,39,,"CCGT D1_Integrated Programme Schedule;CIVILS;CONSTRUCTION;Cooling Water System;Shaft A",1,1,0.0000007453,0.0012207528,0.0006103764,0,1.0,0.0000812387,0.0068493151,0.0030769231,0.001125,0.0031331593,0.0019305019,0.0,1.0,0.0
1.4.2.12.9-87,SFA10035,"Shaft A - Dewatering / observation wells (x 6 nos.)",7112,"CCGTD1_IPS",TT_Task,"58720",-,-,-,100,TK_Complete,10/01/2019,19/12/2018,12/01/2019,20/12/2018,"SFA10030 FS","SFA10030","SFA10040 FS","SFA10040",180,213,180,213,42,49,42,49,43,,"CCGT D1_Integrated Programme Schedule;CIVILS;CONSTRUCTION;Cooling Water System;Shaft A",1,1,0.0,0.0006103764,0.008138352,2,1.0,0.0001609655,0.0068493151,0.0030769231,0.0,0.0015665796,0.0257400257,0.0044843049,1.0,0.0326679077
1.4.2.12.9-88,SFA10284,"Shaft A - Cement mortar and with flooding with water",7112,"CCGTD1_IPS",TT_Task,"58720",-,-,-,100,TK_Complete,11/09/2019,10/08/2019,12/09/2019,11/08/2019,"SFA10280 FS","SFA10280","SFF20020 FF","SFF20020",215,247,215,247,50,57,50,57,76,,"CCGT D1_Integrated Programme Schedule;CIVILS;CONSTRUCTION;Cooling Water System;Shaft A",1,1,0.0000959743,0.0124109868,0.0077314344,1,1.0,0.0005626145,0.0068493151,0.0030769231,0.144875,0.0318537859,0.0244530245,0.0022421525,1.0,0.1972428045
1.4.2.12.10,58719,"Auxiliary Shaft",7112,"CCGTD1_IPS",WBS,"58715",,,,,NotStart,,,,,,,,,,,,,,,,,,,"CCGT D1_Integrated Programme Schedule;CIVILS;CONSTRUCTION;Cooling Water System"
1.4.2.12.11,58718,"Pumping Station",7112,"CCGTD1_IPS",WBS,"58715",,,,100,Complete,26/02/2018,02/04/2018,04/01/2020,21/12/2019,,,,,134,176,231,266,31,41,54,62,,,"CCGT D1_Integrated Programme Schedule;CIVILS;CONSTRUCTION;Cooling Water System"
1.4.2.12.11-1,EV017045,"Event 017P - Advanced Preventive Grouting as per ""AAA"" amendment (Part 2 - 20 out of 86)",7112,"CCGTD1_IPS",TT_Task,"58718",-,-,-,100,TK_Complete,26/11/2018,30/08/2018,05/12/2018,07/09/2018,"","","PPS10015 FF","PPS10015",173,197,175,199,40,46,40,46,39,,"CCGT D1_Integrated Programme Schedule;CIVILS;CONSTRUCTION;Cooling Water System;Pumping Station",0,1,0.0,0.011190234,0.0,9,1.0,0.0000812387,0.0,0.0030769231,0.0,0.0287206266,0.0,0.0201793722,1.0,0.0
1.4.2.12.11-2,EV027010,"Event 027 - Finalizing strategy and preparing for resubmission of re-sequencing amendment",7112,"CCGTD1_IPS",TT_Task,"58718",-,-,-,100,TK_Complete,26/08/2018,24/08/2018,15/09/2018,27/09/2018,"EV023010 FS","EV023010","EV027020 FS","EV027020",160,197,163,201,37,45,38,47,35,,"CCGT D1_Integrated Programme Schedule;CIVILS;CONSTRUCTION;Cooling Water System;Pumping Station",1,1,0.0000000414,0.0103763988,0.0002034588,20,0.0,0.0001106672,0.0068493151,0.0030769231,0.0000625,0.0266318538,0.0006435006,0.0448430493,0.0,0.0120582797
1.4.2.12.11-3,EV027020,"Event 027 - BA5 Re-sequencing alternative(by ARUP) prioritizing Pump Station",7112,"CCGTD1_IPS",TT_Task,"58718",-,-,-,100,TK_Complete,15/12/2018,28/09/2018,12/02/2019,13/12/2018,"EV027010 FS","EV027010","PPS10045 FS","PPS10045",176,202,184,212,41,47,43,49,42,,"CCGT D1_Integrated Programme Schedule;CIVILS;CONSTRUCTION;Cooling Water System;Pumping Station",1,1,0.0000020702,0.01017294,0.0004069176,59,0.0,0.0001754376,0.0068493151,0.0030769231,0.003125,0.0261096606,0.0012870013,0.1322869955,0.0,0.0385978009
1.4.2.12.11-4,EV044010,"Event 044 - Plate Load Test PL2 at stratum of Pump Station",7112,"CCGTD1_IPS",TT_Task,"58718",-,-,-,100,TK_Complete,31/03/2019,13/03/2019,06/04/2019,18/03/2019,"PPS10250 SS","PPS10250","PPS10260 FS","PPS10260",191,225,192,226,44,52,44,52,49,,"CCGT D1_Integrated Programme Schedule;CIVILS;CONSTRUCTION;Cooling Water System;Pumping Station",1,1,0.0,0.0083418108,0.0085452696,6,1.0,0.0003576077,0.0068493151,0.0030769231,0.0,0.0214099217,0.027027027,0.0134529148,1.0,0.1132416576
1.4.2.12.11-5,PPS10020,"CWPS - Grout Curtain",7112,"CCGTD1_IPS",TT_Task,"58718",-,-,-,100,TK_Complete,09/01/2019,18/10/2018,19/02/2019,28/11/2018,"PPS10015 FF","PPS10015","PPS10040 FS","PPS10040",180,204,185,210,42,47,43,49,43,,"CCGT D1_Integrated Programme Schedule;CIVILS;CONSTRUCTION;Cooling Water System;Pumping Station",1,1,0.0000465794,0.0107833164,0.0054933876,41,1.0,0.0006768009,0.0068493151,0.0030769231,0.0703125,0.0276762402,0.0173745174,0.0919282511,1.0,0.2440304913
1.4.2.12.11-6,PPS10040,"CWPS - Pumping Test and Report Submission",7112,"CCGTD1_IPS",TT_Task,"58718",-,-,-,100,TK_Complete,26/12/2018,06/12/2018,15/01/2019,31/12/2018,"PPS10020 FS","PPS10020","PPS10045 FS,PPS10050 FS","PPS10045,PPS10050",178,211,180,215,41,49,42,50,42,,"CCGT D1_Integrated Programme Schedule;CIVILS;CONSTRUCTION;Cooling Water System;Pumping Station",1,2,0.0000476145,0.0105798576,0.0056968464,20,0.6,0.0006579094,0.0068493151,0.0061538462,0.071875,0.027154047,0.018018018,0.0448430493,0.6,0.2362897173
1.4.2.12.11-7,PPS10060,"CWPS - Install 1st layer of struts",7112,"CCGTD1_IPS",TT_Task,"58718",-,-,-,100,TK_Complete,26/01/2019,17/01/2019,02/02/2019,31/01/2019,"PPS10050 FS","PPS10050","PPS10070 FS","PPS10070",182,217,183,219,42,50,42,51,44,,"CCGT D1_Integrated Programme Schedule;CIVILS;CONSTRUCTION;Cooling Water System;Pumping Station",1,1,0.0000020288,0.0099694812,0.006103764,7,0.2,0.0003481805,0.0068493151,0.0030769231,0.0030625,0.0255874674,0.0193050193,0.0156950673,0.2,0.1093788794
1.4.2.12.11-8,PPS10050,"CWPS - Excavate to 0.5m below 1st layer of struts",7112,"CCGTD1_IPS",TT_Task,"58718",-,-,-,100,TK_Complete,28/01/2019,28/12/2018,16/02/2019,17/01/2019,"PPS10040 FS","PPS10040","PPS10060 FS","PPS10060",182,215,185,217,42,50,43,50,46,,"CCGT D1_Integrated Programme Schedule;CIVILS;CONSTRUCTION;Cooling Water System;Pumping Station",1,1,0.0000012007,0.01017294,0.0059003052,19,1.0,0.0003129165,0.0068493151,0.0030769231,0.0018125,0.0261096606,0.0186615187,0.0426008969,1.0,0.0949295376
1.4.2.12.11-9,PPS10080,"CWPS - Install 2nd layer of struts",7112,"CCGTD1_IPS",TT_Task,"58718",-,-,-,100,TK_Complete,01/04/2019,15/02/2019,08/04/2019,21/02/2019,"PPS10070 FS","PPS10070","PPS10090 FS","PPS10090",191,222,192,222,44,51,44,52,51,,"CCGT D1_Integrated Programme Schedule;CIVILS;CONSTRUCTION;Cooling Water System;Pumping Station",1,1,0.0000573858,0.0095625636,0.0073245168,7,1.0,0.0008503417,0.0068493151,0.0030769231,0.086625,0.0245430809,0.0231660232,0.0156950673,1.0,0.3151385021
1.4.2.12.11-10,PPS10070,"CWPS - Excavate to 0.5m below 2nd layer of struts",7112,"CCGTD1_IPS",TT_Task,"58718",-,-,-,100,TK_Complete,01/04/2019,31/01/2019,05/04/2019,14/02/2019,"PPS10060 FS,PPS10045 FS","PPS10060,PPS10045","PPS10080 FS","PPS10080",191,219,192,221,44,51,44,51,51,,"CCGT D1_Integrated Programme Schedule;CIVILS;CONSTRUCTION;Cooling Water System;Pumping Station",2,1,0.000056889,0.0097660224,0.007121058,4,0.0,0.0008937229,0.0136986301,0.0030769231,0.085875,0.0250652742,0.0225225225,0.0089686099,0.0,0.3329138435
1.4.2.12.11-11,PPS10100,"CWPS - Install 3rd layer of struts",7112,"CCGTD1_IPS",TT_Task,"58718",-,-,-,100,TK_Complete,01/04/2019,26/02/2019,06/04/2019,02/03/2019,"PPS10090 FS","PPS10090","PPS10110 FS","PPS10110",191,223,192,224,44,52,44,52,51,,"CCGT D1_Integrated Programme Schedule;CIVILS;CONSTRUCTION;Cooling Water System;Pumping Station",1,1,0.0000581311,0.009155646,0.0077314344,5,1.0,0.0007756995,0.0068493151,0.0030769231,0.08775,0.0234986945,0.0244530245,0.0112107623,1.0,0.2845539765
1.4.2.12.11-12,PPS10110,"CWPS - Excavate to 0.5m below 4th layer struts",7112,"CCGTD1_IPS",TT_Task,"58718",-,-,-,100,TK_Complete,08/04/2019,03/03/2019,11/04/2019,12/03/2019,"PPS10100 FS","PPS10100","PPS10120 FS","PPS10120",192,224,193,225,44,52,45,52,53,,"CCGT D1_Integrated Programme Schedule;CIVILS;CONSTRUCTION;Cooling Water System;Pumping Station",1,1,0.0000583795,0.0089521872,0.0079348932,3,0.6,0.0007495818,0.0068493151,0.0030769231,0.088125,0.0229765013,0.0250965251,0.0067264574,0.6,0.2738523221
1.4.2.12.11-13,PPS10120,"CWPS - Install 4th layer of struts",7112,"CCGTD1_IPS",TT_Task,"58718",-,-,-,100,TK_Complete,01/04/2019,11/03/2019,06/04/2019,18/03/2019,"PPS10110 FS","PPS10110","PPS10250 FF","PPS10250",191,225,192,226,44,52,44,52,51,,"CCGT D1_Integrated Programme Schedule;CIVILS;CONSTRUCTION;Cooling Water System;Pumping Station",1,1,0.0000585451,0.0087487284,0.008138352,5,0.6,0.0007077924,0.0068493151,0.0030769231,0.088375,0.0224543081,0.0257400257,0.0112107623,0.6,0.2567291901
1.4.2.12.11-14,PPS10090,"CWPS - Excavate to 0.5m below 3rd layer of struts",7112,"CCGTD1_IPS",TT_Task,"58718",-,-,-,100,TK_Complete,01/04/2019,22/02/2019,04/04/2019,25/02/2019,"PPS10080 FS","PPS10080","PPS10100 FS","PPS10100",191,223,192,223,44,52,44,52,51,,"CCGT D1_Integrated Programme Schedule;CIVILS;CONSTRUCTION;Cooling Water System;Pumping Station",1,1,0.0000577999,0.0093591048,0.0075279756,3,1.0,0.0008053437,0.0068493151,0.0030769231,0.08725,0.0240208877,0.0238095238,0.0067264574,1.0,0.296700659
1.4.2.12.11-15,PPS10260,"CWPS - Cast base slab",7112,"CCGTD1_IPS",TT_Task,"58718",-,-,-,100,TK_Complete,01/04/2019,24/03/2019,06/04/2019,27/03/2019,"PPS10250 FS,PPSp2BA8 FS,EV044010 FS","PPS10250,PPSp2BA8,EV044010","PPS10270 FF","PPS10270",191,227,192,227,44,53,44,53,51,,"CCGT D1_Integrated Programme Schedule;CIVILS;CONSTRUCTION;Cooling Water System;Pumping Station",3,1,0.0000630167,0.008138352,0.0095625636,5,1.0,0.0006419669,0.0205479452,0.0030769231,0.095125,0.0208877285,0.0302445302,0.0112107623,1.0,0.2297573258
1.4.2.12.11-16,PPS10270,"CWPS - Remove 4th layer of struts",7112,"CCGTD1_IPS",TT_Task,"58718",-,-,-,100,TK_Complete,01/04/2019,28/03/2019,06/04/2019,30/03/2019,"PPS10260 FF","PPS10260","PPS10280 FS","PPS10280",191,227,192,228,44,53,44,53,51,,"CCGT D1_Integrated Programme Schedule;CIVILS;CONSTRUCTION;Cooling Water System;Pumping Station",1,1,0.0000626855,0.0079348932,0.0097660224,5,1.0,0.0006304866,0.0068493151,0.0030769231,0.094625,0.0203655352,0.0308880309,0.0112107623,1.0,0.2250532612
1.4.2.12.11-17,PPS10015,"CWPS - Pipe Piles",7112,"CCGTD1_IPS",TT_Task,"58718",-,-,-,100,TK_Complete,26/07/2018,19/07/2018,04/10/2018,12/10/2018,"SFA-BA58 FS,GENSUB41 FS,SFA-BA58b FS,EV017035 FF,EV017045 FF","SFA-BA58,GENSUB41,SFA-BA58b,EV017035,EV017045","PPS10020 FF","PPS10020",156,191,166,204,36,44,38,47,33,,"CCGT D1_Integrated Programme Schedule;CIVILS;CONSTRUCTION;Cooling Water System;Pumping Station",5,1,0.0000454615,0.0109867752,0.0052899288,70,0.0,0.000699354,0.0342465753,0.0030769231,0.068625,0.0281984334,0.0167310167,0.1569506726,0.0,0.25327158
1.4.2.12.11-18,PPS10280,"CWPS - Construct pumping station RC structures to 0.5m below 3rd layer of strut",7112,"CCGTD1_IPS",TT_Task,"58718",-,-,-,100,TK_Complete,01/05/2019,30/03/2019,05/05/2019,05/04/2019,"PPS10270 FS","PPS10270","PPS10290 FS","PPS10290",196,228,196,229,45,53,45,53,56,,"CCGT D1_Integrated Programme Schedule;CIVILS;CONSTRUCTION;Cooling Water System;Pumping Station",1,1,0.0000622715,0.0077314344,0.0099694812,4,1.0,0.0005916624,0.0068493151,0.0030769231,0.094,0.019843342,0.0315315315,0.0089686099,1.0,0.2091451505
1.4.2.12.11-19,PPS10290,"CWPS - Backfill the void between RC wall and pipe pile wall to 0.5m below 3rd layer of strut",7112,"CCGTD1_IPS",TT_Task,"58718",-,-,-,100,TK_Complete,01/05/2019,05/04/2019,02/05/2019,06/04/2019,"PPS10280 FS","PPS10280","PPS10300 FS","PPS10300",196,229,196,229,45,53,45,53,56,,"CCGT D1_Integrated Programme Schedule;CIVILS;CONSTRUCTION;Cooling Water System;Pumping Station",1,1,0.0000617746,0.0075279756,0.01017294,1,1.0,0.0005409608,0.0068493151,0.0030769231,0.09325,0.0193211488,0.0321750322,0.0022421525,1.0,0.1883702403
1.4.2.12.11-20,PPS10300,"CWPS - Remove 3rd layer of struts",7112,"CCGTD1_IPS",TT_Task,"58718",-,-,-,100,TK_Complete,03/05/2019,06/04/2019,04/05/2019,10/04/2019,"PPS10290 FS","PPS10290","PPS10310 FS","PPS10310",196,229,196,229,45,53,45,53,57,,"CCGT D1_Integrated Programme Schedule;CIVILS;CONSTRUCTION;Cooling Water System;Pumping Station",1,1,0.000061195,0.0073245168,0.0103763988,1,0.6,0.0005202905,0.0068493151,0.0030769231,0.092375,0.0187989556,0.0328185328,0.0022421525,0.6,0.1799006412
1.4.2.12.11-21,PPS10310,"CWPS - Construct pumping station RC structures to 0.5m below 2nd layer of strut",7112,"CCGTD1_IPS",TT_Task,"58718",-,-,-,100,TK_Complete,05/05/2019,09/04/2019,10/05/2019,18/04/2019,"PPS10300 FS","PPS10300","PPS10320 FS","PPS10320",196,229,197,230,45,53,46,53,57,,"CCGT D1_Integrated Programme Schedule;CIVILS;CONSTRUCTION;Cooling Water System;Pumping Station",1,1,0.0000605325,0.007121058,0.0105798576,5,0.8,0.000515852,0.0068493151,0.0030769231,0.091375,0.0182767624,0.0334620335,0.0112107623,0.8,0.1780819628
1.4.2.12.11-22,PPS10320,"CWPS - Backfill the void between RC wall and pipe pile wall to 0.5m below 2nd layer of strut",7112,"CCGTD1_IPS",TT_Task,"58718",-,-,-,100,TK_Complete,01/05/2019,19/04/2019,02/05/2019,19/04/2019,"PPS10310 FS","PPS10310","PPS10330 FF","PPS10330",196,231,196,231,45,53,45,53,56,,"CCGT D1_Integrated Programme Schedule;CIVILS;CONSTRUCTION;Cooling Water System;Pumping Station",1,1,0.0000597872,0.0069175992,0.0107833164,1,1.0,0.0005121804,0.0068493151,0.0030769231,0.09025,0.0177545692,0.0341055341,0.0022421525,1.0,0.1765775535
1.4.2.12.11-23,PPS10330,"CWPS - Remove 2nd layer of struts",7112,"CCGTD1_IPS",TT_Task,"58718",-,-,-,100,TK_Complete,02/05/2019,13/04/2019,03/05/2019,23/04/2019,"PPS10320 FF","PPS10320","PPS10340 FF","PPS10340",196,230,196,231,45,53,45,54,56,,"CCGT D1_Integrated Programme Schedule;CIVILS;CONSTRUCTION;Cooling Water System;Pumping Station",1,1,0.0000589592,0.0067141404,0.0109867752,1,0.2,0.0005103981,0.0068493151,0.0030769231,0.089,0.017232376,0.0347490347,0.0022421525,0.2,0.1758472612
1.4.2.12.11-24,PPS10340,"CWPS - Construct pumping station RC structures to 0.5m below 1st layer of strut",7112,"CCGTD1_IPS",TT_Task,"58718",-,-,-,100,TK_Complete,01/05/2019,14/04/2019,03/05/2019,30/04/2019,"PPS10330 FF","PPS10330","IBC10140 FS,PPS10360 FS","IBC10140,PPS10360",196,230,196,232,45,53,45,54,56,,"CCGT D1_Integrated Programme Schedule;CIVILS;CONSTRUCTION;Cooling Water System;Pumping Station",1,2,0.0000580483,0.0065106816,0.011190234,2,0.0,0.0005084146,0.0068493151,0.0061538462,0.087625,0.0167101828,0.0353925354,0.0044843049,0.0,0.1750345218
1.4.2.12.11-25,PPS10350,"CWPS - Install CW pipes between Valve Chamber and Shaft A",7112,"CCGTD1_IPS",TT_Task,"58718",-,-,-,100,TK_Complete,01/01/2020,10/12/2019,04/01/2020,17/12/2019,"SFA20210 FS","SFA20210","SFA20220 FS","SFA20220",231,264,231,265,53,61,54,61,86,,"CCGT D1_Integrated Programme Schedule;CIVILS;CONSTRUCTION;Cooling Water System;Pumping Station",1,1,0.0,0.0002034588,0.0187182096,3,0.4,0.0004678059,0.0068493151,0.0030769231,0.0,0.0005221932,0.0592020592,0.0067264574,0.4,0.1583951587
1.4.2.12.11-26,PPS10360,"CWPS - Backfill the void between RC wall and pipe pile wall to 0.5m below 1st layer of strut",7112,"CCGTD1_IPS",TT_Task,"58718",-,-,-,100,TK_Complete,01/08/2019,01/05/2019,02/08/2019,01/05/2019,"PPS10340 FS","PPS10340","PPS10370 FF","PPS10370",209,232,209,232,48,54,48,54,68,,"CCGT D1_Integrated Programme Schedule;CIVILS;CONSTRUCTION;Cooling Water System;Pumping Station",1,1,0.0000208262,0.002034588,0.0113936928,1,1.0,0.0001659695,0.0068493151,0.0030769231,0.0314375,0.0052219321,0.036036036,0.0022421525,1.0,0.0347182699
1.4.2.12.11-27,PPS10370,"CWPS - Remove 1st layer of struts",7112,"CCGTD1_IPS",TT_Task,"58718",-,-,-,100,TK_Complete,03/05/2019,25/04/2019,04/05/2019,06/05/2019,"PPS10360 FF","PPS10360","PPS10380 FS,PPS10390 FS","PPS10380,PPS10390",196,231,196,233,45,54,45,54,57,,"CCGT D1_Integrated Programme Schedule;CIVILS;CONSTRUCTION;Cooling Water System;Pumping Station",1,2,0.0000188802,0.0018311292,0.0115971516,1,0.0,0.0002223248,0.0068493151,0.0061538462,0.0285,0.0046997389,0.0366795367,0.0022421525,0.0,0.057809773
1.4.2.12.11-28,PPS10380,"CWPS - Cast top slab of Pumping Station",7112,"CCGTD1_IPS",TT_Task,"58718",-,-,-,100,TK_Complete,03/05/2019,25/04/2019,11/05/2019,18/05/2019,"PPS10370 FS,PPS10390 FF","PPS10370,PPS10390","IBC10290 FS,CW1.1 FS,PPS10400 FS","IBC10290,CW1.1,PPS10400",196,231,197,235,45,54,46,54,57,,"CCGT D1_Integrated Programme Schedule;CIVILS;CONSTRUCTION;Cooling Water System;Pumping Station",2,3,0.000010489,0.0014242116,0.0120040692,8,0.0,0.0003313654,0.0136986301,0.0092307692,0.0158333333,0.0036553525,0.037966538,0.0179372197,0.0,0.1024889218
1.4.2.12.11-29,PPS10390,"CWPS - Trim pipe piles",7112,"CCGTD1_IPS",TT_Task,"58718",-,-,-,100,TK_Complete,03/06/2019,07/05/2019,04/06/2019,20/05/2019,"PPS10370 FS","PPS10370","PPS10400 FS,PPS10380 FF","PPS10400,PPS10380",200,233,200,235,46,54,46,54,61,,"CCGT D1_Integrated Programme Schedule;CIVILS;CONSTRUCTION;Cooling Water System;Pumping Station",1,2,0.0000040852,0.0016276704,0.0118006104,1,0.0,0.0001017051,0.0068493151,0.0061538462,0.0061666667,0.0041775457,0.0373230373,0.0022421525,0.0,0.008386057
1.4.2.12.11-30,PPS10400,"CWPS - Backfill to ground level",7112,"CCGTD1_IPS",TT_Task,"58718",-,-,-,100,TK_Complete,08/06/2019,21/05/2019,08/06/2019,21/05/2019,"PPS10390 FS,PPS10380 FS","PPS10390,PPS10380","PPS10410 FF,PPS10420 FS","PPS10410,PPS10420",201,235,201,235,47,54,47,54,62,,"CCGT D1_Integrated Programme Schedule;CIVILS;CONSTRUCTION;Cooling Water System;Pumping Station",2,2,0.0000060036,0.0006103764,0.012207528,0,1.0,0.0000812387,0.0136986301,0.0061538462,0.0090625,0.0015665796,0.0386100386,0.0,1.0,0.0
1.4.2.12.11-31,PPS10410,"CWPS - Construct misc RC structures (i.e. footings, trenches, staircase and switchroom)",7112,"CCGTD1_IPS",TT_Task,"58718",-,-,-,100,TK_Complete,10/06/2019,14/05/2019,29/06/2019,10/08/2019,"PPS10400 FF","PPS10400","SW1.1 FF","SW1.1",201,234,204,247,47,54,47,57,62,,"CCGT D1_Integrated Programme Schedule;CIVILS;CONSTRUCTION;Cooling Water System;Pumping Station",1,1,0.0000005383,0.0002034588,0.0124109868,19,0.0,0.000102432,0.0068493151,0.0030769231,0.0008125,0.0005221932,0.0392535393,0.0426008969,0.0,0.0086839062
1.4.2.12.11-32,PPS10250,"CWPS - Excavate to final excavation level -6.5 mPD",7112,"CCGTD1_IPS",TT_Task,"58718",-,-,-,100,TK_Complete,01/04/2019,11/03/2019,02/04/2019,23/03/2019,"PPS10120 FF","PPS10120","PPS10260 FS,EV044010 SS","PPS10260,EV044010",191,225,191,227,44,52,44,53,51,,"CCGT D1_Integrated Programme Schedule;CIVILS;CONSTRUCTION;Cooling Water System;Pumping Station",1,2,0.0000586279,0.0085452696,0.0083418108,1,0.0,0.0006475728,0.0068493151,0.0061538462,0.0885,0.0219321149,0.0263835264,0.0022421525,0.0,0.232054297
1.4.2.12.11-33,PPS10420,"CWPS - ABWF works",7112,"CCGTD1_IPS",TT_Task,"58718",-,-,-,100,TK_Complete,01/08/2019,21/06/2019,13/09/2019,21/12/2019,"PPS10400 FS","PPS10400","SW1.1 FF","SW1.1",209,240,215,266,48,56,50,62,68,,"CCGT D1_Integrated Programme Schedule;CIVILS;CONSTRUCTION;Cooling Water System;Pumping Station",1,1,0.0000005383,0.0002034588,0.0124109868,43,0.0,0.0001292025,0.0068493151,0.0030769231,0.0008125,0.0005221932,0.0392535393,0.0964125561,0.0,0.019653051
1.4.2.12.11-34,PPS10430,"CWPS - Building Service installation",7112,"CCGTD1_IPS",TT_Task,"58718",-,-,-,100,TK_Complete,10/08/2019,13/06/2019,23/09/2019,19/12/2019,"","","SW1.1 FF","SW1.1",210,238,216,265,49,55,50,62,69,,"CCGT D1_Integrated Programme Schedule;CIVILS;CONSTRUCTION;Cooling Water System;Pumping Station",0,1,0.0,0.0002034588,0.0,44,0.0,0.0000812387,0.0,0.0030769231,0.0,0.0005221932,0.0,0.0986547085,0.0,0.0
1.4.2.12.11-35,PPS10045,"CWPS - BD Consent for Commencement of Excavation & ELS",7112,"CCGTD1_IPS",TT_Task,"58718",-,-,-,100,TK_Complete,26/01/2019,31/12/2018,22/02/2019,01/02/2019,"PPS10040 FS,EV023010 FS,EV027020 FS","PPS10040,EV023010,EV027020","PPS10070 FS","PPS10070",182,215,186,220,42,50,43,51,44,,"CCGT D1_Integrated Programme Schedule;CIVILS;CONSTRUCTION;Cooling Water System;Pumping Station",3,1,0.0000522517,0.0099694812,0.0065106816,27,0.6,0.0005995327,0.0205479452,0.0030769231,0.078875,0.0255874674,0.0205920206,0.0605381166,0.6,0.2123699868
1.4.2.12.11-36,EV016035,"Event 016 - Bund Wall Settlement / Preventive grouting (50 nos.)",7112,"CCGTD1_IPS",TT_Task,"58718",-,-,-,100,TK_Complete,26/02/2018,02/04/2018,22/03/2018,03/05/2018,"","","","",134,176,138,180,31,41,32,42,19,,"CCGT D1_Integrated Programme Schedule;CIVILS;CONSTRUCTION;Cooling Water System;Pumping Station",0,0,0.0,0.0,0.0,24,0.2,0.0000812387,0.0,0.0,0.0,0.0,0.0,0.0538116592,0.2,0.0
1.4.2.12.11-37,EV025100,"Event 025P - Preventive grouting stopped as it's being legalized via AAA amendment",7112,"CCGTD1_IPS",TT_Task,"58718",-,-,-,100,TK_Complete,26/06/2018,23/06/2018,29/06/2018,26/06/2018,"","","","",151,188,152,188,35,43,35,44,31,,"CCGT D1_Integrated Programme Schedule;CIVILS;CONSTRUCTION;Cooling Water System;Pumping Station",0,0,0.0,0.0,0.0,3,1.0,0.0000812387,0.0,0.0,0.0,0.0,0.0,0.0067264574,1.0,0.0
1.4.2.12.11-38,EV017035,"Event 017P - Advanced Preventive Grouting as per ""AAA"" amendment (Part 1 - 66 out of 86)",7112,"CCGTD1_IPS",TT_Task,"58718",-,-,-,100,TK_Complete,26/06/2018,02/06/2018,24/08/2018,25/07/2018,"SFA_BA58b FF","SFA_BA58b","PPS10015 FF","PPS10015",151,185,160,192,35,43,37,44,31,,"CCGT D1_Integrated Programme Schedule;CIVILS;CONSTRUCTION;Cooling Water System;Pumping Station",1,1,0.0000134149,0.011190234,0.0012207528,59,1.0,0.0003054671,0.0068493151,0.0030769231,0.02025,0.0287206266,0.0038610039,0.1322869955,1.0,0.0918771605
1.4.2.12.12,58717,"Diversion Culvert (a.k.a. Intake Box Culvert)",7112,"CCGTD1_IPS",WBS,"58715",,,,100,Complete,23/10/2017,07/09/2017,25/02/2020,25/02/2020,,,,,116,146,238,275,27,34,55,64,,,"CCGT D1_Integrated Programme Schedule;CIVILS;CONSTRUCTION;Cooling Water System"
1.4.2.12.12-1,IBC00020,"Diversion Culvert - Utilities Diversion Stage 2",7112,"CCGTD1_IPS",TT_Task,"58717",-,-,-,100,TK_Complete,26/01/2019,30/12/2018,18/02/2019,21/01/2019,"IBC00010 FS","IBC00010","IBC00030 FS","IBC00030",182,215,185,218,42,50,43,50,44,,"CCGT D1_Integrated Programme Schedule;CIVILS;CONSTRUCTION;Cooling Water System;Diversion Culvert (a.k.a. Intake Box Culvert)",1,1,0.0000013663,0.0063072228,0.0022380468,23,1.0,0.0001340818,0.0068493151,0.0030769231,0.0020625,0.0161879896,0.0070785071,0.0515695067,1.0,0.021652353
1.4.2.12.12-2,IBC00030,"Diversion Culvert - Utilities Diversion Stage 3",7112,"CCGTD1_IPS",TT_Task,"58717",-,-,-,100,TK_Complete,26/01/2019,22/01/2019,18/02/2019,12/02/2019,"IBC00020 FS","IBC00020","IBC10010 FF,IBC10090 FF","IBC10010,IBC10090",182,218,185,221,42,51,43,51,44,,"CCGT D1_Integrated Programme Schedule;CIVILS;CONSTRUCTION;Cooling Water System;Diversion Culvert (a.k.a. Intake Box Culvert)",1,2,0.000002153,0.006103764,0.0024415056,23,1.0,0.0001953935,0.0068493151,0.0061538462,0.00325,0.0156657963,0.0077220077,0.0515695067,1.0,0.0467747259
1.4.2.12.12-3,EV017110,"Event 017 - Diversion Culvert  APG",7112,"CCGTD1_IPS",TT_Task,"58717",-,-,-,100,TK_Complete,06/12/2018,11/10/2018,03/01/2019,27/11/2018,"IBC10080 FS","IBC10080","IBC10090 FS,IBC10010 FS","IBC10090,IBC10010",175,203,179,210,40,47,41,49,42,,"CCGT D1_Integrated Programme Schedule;CIVILS;CONSTRUCTION;Cooling Water System;Diversion Culvert (a.k.a. Intake Box Culvert)",1,2,0.0000005797,0.006103764,0.0032553408,28,0.0,0.00025092,0.0068493151,0.0061538462,0.000875,0.0156657963,0.0102960103,0.0627802691,0.0,0.0695265973
1.4.2.12.12-4,EV007011,"Event 007 - Approval of Site Arrangement and TTA",7112,"CCGTD1_IPS",TT_Task,"58717",-,-,-,100,TK_Complete,23/10/2017,07/09/2017,23/10/2017,29/11/2017,"","","IBC00010 FS","IBC00010",116,146,116,158,27,34,27,37,13,,"CCGT D1_Integrated Programme Schedule;CIVILS;CONSTRUCTION;Cooling Water System;Diversion Culvert (a.k.a. Intake Box Culvert)",0,1,0.0,0.0067141404,0.0,0,0.0,0.0000812387,0.0,0.0030769231,0.0,0.017232376,0.0,0.0,0.0,0.0
1.4.2.12.12-5,IBC00010,"Diversion Culvert - Utilities Diversion Stage 1",7112,"CCGTD1_IPS",TT_Task,"58717",-,-,-,100,TK_Complete,27/08/2018,14/08/2018,31/08/2018,18/08/2018,"EV007011 FS,ICM00010 FS","EV007011,ICM00010","IBC10010 FS,IBC00020 FS","IBC10010,IBC00020",160,195,161,196,37,45,37,45,35,,"CCGT D1_Integrated Programme Schedule;CIVILS;CONSTRUCTION;Cooling Water System;Diversion Culvert (a.k.a. Intake Box Culvert)",2,2,0.0000099369,0.0065106816,0.002034588,4,1.0,0.000175447,0.0136986301,0.0061538462,0.015,0.0167101828,0.0064350064,0.0089686099,1.0,0.0386016807
1.4.2.12.12-6,EV008011,"Event 008 - Declaration of unplanted area",7112,"CCGTD1_IPS",TT_Task,"58717",-,-,-,100,TK_Complete,13/12/2017,06/12/2017,30/12/2017,16/12/2017,"","","","",124,159,126,161,28,37,29,37,16,,"CCGT D1_Integrated Programme Schedule;CIVILS;CONSTRUCTION;Cooling Water System;Diversion Culvert (a.k.a. Intake Box Culvert)",0,0,0.0,0.0,0.0,17,1.0,0.0000812387,0.0,0.0,0.0,0.0,0.0,0.0381165919,1.0,0.0
1.4.2.12.12-7,EV007011a,"Event 007 - Issue of LWC for barricading the areas",7112,"CCGTD1_IPS",TT_Task,"58717",-,-,-,100,TK_Complete,27/11/2017,30/11/2017,27/11/2017,05/12/2017,"","","EV007011b FS","EV007011b",121,158,121,159,28,37,28,37,15,,"CCGT D1_Integrated Programme Schedule;CIVILS;CONSTRUCTION;Cooling Water System;Diversion Culvert (a.k.a. Intake Box Culvert)",0,1,0.0,0.0002034588,0.0,0,0.6,0.0000812387,0.0,0.0030769231,0.0,0.0005221932,0.0,0.0,0.6,0.0
1.4.2.12.12-8,EV007011b,"Event 007 - Barrication as per approved site layout and TTM",7112,"CCGTD1_IPS",TT_Task,"58717",-,-,-,100,TK_Complete,27/11/2017,05/12/2017,27/11/2017,05/12/2017,"EV007011a FS","EV007011a","","",121,159,121,159,28,37,28,37,15,,"CCGT D1_Integrated Programme Schedule;CIVILS;CONSTRUCTION;Cooling Water System;Diversion Culvert (a.k.a. Intake Box Culvert)",1,0,0.0,0.0,0.0002034588,0,1.0,0.0000812387,0.0068493151,0.0,0.0,0.0,0.0006435006,0.0,1.0,0.0
1.4.2.12.12-9,EV008011a,"Event 008 - Excavation Permit",7112,"CCGTD1_IPS",TT_Task,"58717",-,-,-,100,TK_Complete,27/11/2017,15/12/2017,27/11/2017,29/12/2017,"","","","",121,161,121,163,28,37,28,38,15,,"CCGT D1_Integrated Programme Schedule;CIVILS;CONSTRUCTION;Cooling Water System;Diversion Culvert (a.k.a. Intake Box Culvert)",0,0,0.0,0.0,0.0,0,0.0,0.0000812387,0.0,0.0,0.0,0.0,0.0,0.0,0.0,0.0
1.4.2.12.12-10,IBC10010,"Diversion Culvert - Pipe pile along the inner cofferdam wall alignment",7112,"CCGTD1_IPS",TT_Task,"58717",-,-,-,100,TK_Complete,26/12/2018,12/12/2018,06/02/2019,30/04/2019,"SFA-BA58 FS,IBC00010 FS,SFA-BA58b FS,EV017110 FS,IBC00030 FF","SFA-BA58,IBC00010,SFA-BA58b,EV017110,IBC00030","IBC10030 FF","IBC10030",178,212,184,232,41,49,42,54,42,,"CCGT D1_Integrated Programme Schedule;CIVILS;CONSTRUCTION;Cooling Water System;Diversion Culvert (a.k.a. Intake Box Culvert)",5,1,0.0000192528,0.0054933876,0.006103764,42,0.0,0.0004762909,0.0342465753,0.0030769231,0.0290625,0.0140992167,0.0193050193,0.0941704036,0.0,0.1618718839
1.4.2.12.12-11,IBC10030,"Diversion Culvert - Grout curtain along the inner cofferdam wall alignment",7112,"CCGTD1_IPS",TT_Task,"58717",-,-,-,100,TK_Complete,08/04/2019,28/03/2019,11/05/2019,24/05/2019,"IBC10010 FF","IBC10010","IBC10110 FS","IBC10110",192,227,197,236,44,53,46,55,53,,"CCGT D1_Integrated Programme Schedule;CIVILS;CONSTRUCTION;Cooling Water System;Diversion Culvert (a.k.a. Intake Box Culvert)",1,1,0.0000190872,0.0052899288,0.0063072228,33,0.0,0.0004868943,0.0068493151,0.0030769231,0.0288125,0.0135770235,0.0199485199,0.0739910314,0.0,0.1662166055
1.4.2.12.12-12,IBC10050,"Diversion Culvert - Install silt curtain",7112,"CCGTD1_IPS",TT_Task,"58717",-,-,-,100,TK_Complete,27/08/2018,21/08/2018,28/08/2018,23/08/2018,"ICM00060 FF","ICM00060","IBC10070 FS","IBC10070",160,196,160,196,37,45,37,45,35,,"CCGT D1_Integrated Programme Schedule;CIVILS;CONSTRUCTION;Cooling Water System;Diversion Culvert (a.k.a. Intake Box Culvert)",1,1,0.0000006832,0.0067141404,0.0002034588,1,0.8,0.000084005,0.0068493151,0.0030769231,0.00103125,0.017232376,0.0006435006,0.0022421525,0.8,0.0011334783
1.4.2.12.12-13,IBC10060,"Diversion Culvert - Remove parts of crest wall and fence",7112,"CCGTD1_IPS",TT_Task,"58717",-,-,-,100,TK_Complete,26/11/2018,03/09/2018,08/12/2018,08/09/2018,"ICM00050 FS","ICM00050","IBC10070 FS,S1090 SS","IBC10070,S1090",173,198,175,199,40,46,40,46,39,,"CCGT D1_Integrated Programme Schedule;CIVILS;CONSTRUCTION;Cooling Water System;Diversion Culvert (a.k.a. Intake Box Culvert)",1,1,0.0000012421,0.0067141404,0.0022380468,12,1.0,0.0002331569,0.0068493151,0.0030769231,0.001875,0.017232376,0.0070785071,0.0269058296,1.0,0.0622481742
1.4.2.12.12-14,IBC10070,"Diversion Culvert - Remove rock armour from the existing seawall",7112,"CCGTD1_IPS",TT_Task,"58717",-,-,-,100,TK_Complete,03/12/2018,10/09/2018,08/12/2018,22/09/2018,"IBC10060 FS,IBC10050 FS,ICM00070 FS","IBC10060,IBC10050,ICM00070","IBC10080 FS","IBC10080",174,199,175,201,40,46,40,46,41,,"CCGT D1_Integrated Programme Schedule;CIVILS;CONSTRUCTION;Cooling Water System;Diversion Culvert (a.k.a. Intake Box Culvert)",3,1,0.0000073699,0.0065106816,0.0028484232,5,0.4,0.0004476345,0.0205479452,0.0030769231,0.011125,0.0167101828,0.009009009,0.0112107623,0.4,0.15012998
1.4.2.12.12-15,IBC10080,"Diversion Culvert - Rock fill to +4mPD to form temporary piling platform",7112,"CCGTD1_IPS",TT_Task,"58717",-,-,-,100,TK_Complete,10/12/2018,24/09/2018,12/12/2018,06/10/2018,"IBC10070 FS","IBC10070","IBC10090 FS,EV017110 FS","IBC10090,EV017110",175,201,176,203,41,47,41,47,42,,"CCGT D1_Integrated Programme Schedule;CIVILS;CONSTRUCTION;Cooling Water System;Diversion Culvert (a.k.a. Intake Box Culvert)",1,2,0.0000080738,0.0063072228,0.003051882,2,0.0,0.0004624553,0.0068493151,0.0061538462,0.0121875,0.0161879896,0.0096525097,0.0044843049,0.0,0.1562027819
1.4.2.12.12-16,IBC10090,"Diversion Culvert - Pipe pile along the outer cofferdam wall alignment",7112,"CCGTD1_IPS",TT_Task,"58717",-,-,-,100,TK_Complete,26/12/2018,01/12/2018,01/02/2019,11/04/2019,"IBC10080 FS,EV017110 FS,IBC00030 FF","IBC10080,EV017110,IBC00030","IBC10100 FF","IBC10100",178,211,183,229,41,49,42,53,42,,"CCGT D1_Integrated Programme Schedule;CIVILS;CONSTRUCTION;Cooling Water System;Diversion Culvert (a.k.a. Intake Box Culvert)",3,1,0.0000100197,0.0054933876,0.0042726348,37,0.0,0.0004834689,0.0205479452,0.0030769231,0.015125,0.0140992167,0.0135135135,0.0829596413,0.0,0.1648130372
1.4.2.12.12-17,IBC10100,"Diversion Culvert - Grout curtain along the outer cofferdam wall alignment",7112,"CCGTD1_IPS",TT_Task,"58717",-,-,-,100,TK_Complete,01/04/2019,04/03/2019,04/05/2019,24/05/2019,"IBC10090 FF","IBC10090","IBC10110 FS","IBC10110",191,224,196,236,44,52,45,55,51,,"CCGT D1_Integrated Programme Schedule;CIVILS;CONSTRUCTION;Cooling Water System;Diversion Culvert (a.k.a. Intake Box Culvert)",1,1,0.0000102268,0.0052899288,0.0044760936,33,0.0,0.0004930661,0.0068493151,0.0030769231,0.0154375,0.0135770235,0.0141570142,0.0739910314,0.0,0.1687455
1.4.2.12.12-18,IBC10110,"Diversion Culvert - Pumping Test and Report Submission (C1)",7112,"CCGTD1_IPS",TT_Task,"58717",-,-,-,100,TK_Complete,01/08/2019,01/06/2019,21/08/2019,13/06/2019,"IBC10100 FS,IBC10030 FS","IBC10100,IBC10030","IBC10120 FF,IBC10115 FS","IBC10120,IBC10115",209,237,212,238,48,55,49,55,68,,"CCGT D1_Integrated Programme Schedule;CIVILS;CONSTRUCTION;Cooling Water System;Diversion Culvert (a.k.a. Intake Box Culvert)",2,2,0.0000300592,0.00508647,0.0069175992,20,1.0,0.0009165078,0.0136986301,0.0061538462,0.045375,0.0130548303,0.0218790219,0.0448430493,1.0,0.3422499097
1.4.2.12.12-19,IBC10150,"Diversion Culvert - Install 1st layer of struts and temporary support to existing utilities",7112,"CCGTD1_IPS",TT_Task,"58717",-,-,-,100,TK_Complete,01/08/2019,25/06/2019,05/08/2019,26/07/2019,"IBC10140 FS","IBC10140","IBC10160 FS","IBC10160",209,240,209,245,48,56,48,57,68,,"CCGT D1_Integrated Programme Schedule;CIVILS;CONSTRUCTION;Cooling Water System;Diversion Culvert (a.k.a. Intake Box Culvert)",1,1,0.0000370151,0.0044760936,0.0118006104,4,0.0,0.0004804325,0.0068493151,0.0030769231,0.055875,0.0114882507,0.0373230373,0.0089686099,0.0,0.1635688788
1.4.2.12.12-20,IBC10140,"Diversion Culvert - Excavate to 0.5m below 1st layer of struts",7112,"CCGTD1_IPS",TT_Task,"58717",-,-,-,100,TK_Complete,01/08/2019,17/06/2019,05/08/2019,24/06/2019,"SFA_BA58 FS,PPS10340 FS","SFA_BA58,PPS10340","IBC10150 FS","IBC10150",209,239,209,240,48,55,48,56,68,,"CCGT D1_Integrated Programme Schedule;CIVILS;CONSTRUCTION;Cooling Water System;Diversion Culvert (a.k.a. Intake Box Culvert)",2,1,0.0000384642,0.0046795524,0.0115971516,4,1.0,0.0004698632,0.0136986301,0.0030769231,0.0580625,0.0120104439,0.0366795367,0.0089686099,1.0,0.1592381267
1.4.2.12.12-21,IBC10170,"Diversion Culvert - Install 2nd layer of struts",7112,"CCGTD1_IPS",TT_Task,"58717",-,-,-,100,TK_Complete,09/09/2019,15/08/2019,20/09/2019,29/08/2019,"IBC10160 FS","IBC10160","IBC10180 FS","IBC10180",214,247,216,249,50,57,50,58,76,,"CCGT D1_Integrated Programme Schedule;CIVILS;CONSTRUCTION;Cooling Water System;Diversion Culvert (a.k.a. Intake Box Culvert)",1,1,0.000055564,0.004069176,0.0168870804,11,0.8,0.0008721854,0.0068493151,0.0030769231,0.083875,0.0104438642,0.0534105534,0.0246636771,0.8,0.3240889047
1.4.2.12.12-22,IBC10160,"Diversion Culvert - Excavate to 0.5m below 2nd layer of struts",7112,"CCGTD1_IPS",TT_Task,"58717",-,-,-,100,TK_Complete,01/08/2019,27/07/2019,04/08/2019,25/08/2019,"IBC10150 FS,IBC10120 FS","IBC10150,IBC10120","IBC10170 FS","IBC10170",209,245,209,249,48,57,48,58,68,,"CCGT D1_Integrated Programme Schedule;CIVILS;CONSTRUCTION;Cooling Water System;Diversion Culvert (a.k.a. Intake Box Culvert)",2,1,0.0000581311,0.0042726348,0.0166836216,3,0.0,0.0009285812,0.0136986301,0.0030769231,0.08775,0.0109660574,0.0527670528,0.0067264574,0.0,0.3471969607
1.4.2.12.12-23,IBC10190,"Diversion Culvert - Install 3rd layer of struts",7112,"CCGTD1_IPS",TT_Task,"58717",-,-,-,100,TK_Complete,02/11/2019,02/09/2019,09/11/2019,13/09/2019,"IBC10180 FS","IBC10180","IBC10200 FS","IBC10200",222,250,223,252,51,58,52,58,81,,"CCGT D1_Integrated Programme Schedule;CIVILS;CONSTRUCTION;Cooling Water System;Diversion Culvert (a.k.a. Intake Box Culvert)",1,1,0.0000501815,0.0036622584,0.017293998,7,0.6,0.0007726241,0.0068493151,0.0030769231,0.07575,0.0093994778,0.0546975547,0.0156950673,0.6,0.2832938508
1.4.2.12.12-24,IBC10200,"Diversion Culvert - Excavate to 0.5m below 4th layer struts",7112,"CCGTD1_IPS",TT_Task,"58717",-,-,-,100,TK_Complete,01/11/2019,14/09/2019,09/11/2019,28/09/2019,"IBC10190 FS","IBC10190","IBC10210 FS","IBC10210",222,252,223,254,51,58,52,59,80,,"CCGT D1_Integrated Programme Schedule;CIVILS;CONSTRUCTION;Cooling Water System;Diversion Culvert (a.k.a. Intake Box Culvert)",1,1,0.0000473661,0.0034587996,0.0174974568,8,1.0,0.0007255099,0.0068493151,0.0030769231,0.0715,0.0088772846,0.0553410553,0.0179372197,1.0,0.263988895
1.4.2.12.12-25,IBC10210,"Diversion Culvert - Install 4th layer of struts",7112,"CCGTD1_IPS",TT_Task,"58717",-,-,-,100,TK_Complete,01/11/2019,26/09/2019,08/11/2019,10/10/2019,"IBC10200 FS","IBC10200","IBC10220 FS","IBC10220",222,253,223,255,51,59,52,59,81,,"CCGT D1_Integrated Programme Schedule;CIVILS;CONSTRUCTION;Cooling Water System;Diversion Culvert (a.k.a. Intake Box Culvert)",1,1,0.0000444678,0.0032553408,0.0177009156,7,0.6,0.0006826599,0.0068493151,0.0030769231,0.067125,0.0083550914,0.055984556,0.0156950673,0.6,0.2464311766
1.4.2.12.12-26,IBC10180,"Diversion Culvert - Excavate to 0.5m below 3rd layer of struts",7112,"CCGTD1_IPS",TT_Task,"58717",-,-,-,100,TK_Complete,01/09/2019,27/08/2019,08/09/2019,04/09/2019,"IBC10170 FS","IBC10170","IBC10190 FS","IBC10190",213,249,214,250,49,58,50,58,74,,"CCGT D1_Integrated Programme Schedule;CIVILS;CONSTRUCTION;Cooling Water System;Diversion Culvert (a.k.a. Intake Box Culvert)",1,1,0.0000529142,0.0038657172,0.0170905392,7,1.0,0.0008152561,0.0068493151,0.0030769231,0.079875,0.009921671,0.0540540541,0.0156950673,1.0,0.3007622215
1.4.2.12.12-27,IBC10230,"Diversion Culvert (C1) - Cast base slab and walls to 0.5m below 4th layer of struts",7112,"CCGTD1_IPS",TT_Task,"58717",-,-,-,100,TK_Complete,01/11/2019,23/10/2019,06/11/2019,04/11/2019,"CWS-2BA8XX FS,PPSp2BA8 FS,EV019120 FS","CWS-2BA8XX,PPSp2BA8,EV019120","IBC10240 FF","IBC10240",222,257,223,259,51,60,52,60,81,,"CCGT D1_Integrated Programme Schedule;CIVILS;CONSTRUCTION;Cooling Water System;Diversion Culvert (a.k.a. Intake Box Culvert)",3,1,0.0000376362,0.0024415056,0.0189216684,5,0.0,0.0002869058,0.0205479452,0.0030769231,0.0568125,0.0062663185,0.0598455598,0.0112107623,0.0,0.0842717053
1.4.2.12.12-28,IBC10250,"Diversion Culvert - Remove 4th layer of struts",7112,"CCGTD1_IPS",TT_Task,"58717",-,-,-,100,TK_Complete,05/01/2020,05/11/2019,07/01/2020,06/11/2019,"IBC10240 FS","IBC10240","IBC10270 FS","IBC10270",231,259,231,259,54,60,54,60,87,,"CCGT D1_Integrated Programme Schedule;CIVILS;CONSTRUCTION;Cooling Water System;Diversion Culvert (a.k.a. Intake Box Culvert)",1,1,0.0000307631,0.002034588,0.019328586,2,1.0,0.0001503957,0.0068493151,0.0030769231,0.0464375,0.0052219321,0.0611325611,0.0044843049,1.0,0.0283369572
1.4.2.12.12-29,IBC10220,"Diversion Culvert - Excavate to final excavation level -5.5 mPD",7112,"CCGTD1_IPS",TT_Task,"58717",-,-,-,100,TK_Complete,01/11/2019,01/10/2019,08/11/2019,22/10/2019,"IBC10210 FS","IBC10210","IBC10355 FS,EV019120 FF","IBC10355,EV019120",222,254,223,257,51,59,52,60,81,,"CCGT D1_Integrated Programme Schedule;CIVILS;CONSTRUCTION;Cooling Water System;Diversion Culvert (a.k.a. Intake Box Culvert)",1,2,0.0000414867,0.003051882,0.0179043744,7,0.0,0.0006449877,0.0068493151,0.0061538462,0.062625,0.0078328982,0.0566280566,0.0156950673,0.0,0.2309950843
1.4.2.12.12-30,IBC10270,"Diversion Culvert (C1) - Cast remaining walls and top slab",7112,"CCGTD1_IPS",TT_Task,"58717",-,-,-,100,TK_Complete,08/01/2020,07/11/2019,18/01/2020,28/11/2019,"IBC10250 FS","IBC10250","IBC10300 FS,IBC10290 FF","IBC10300,IBC10290",232,259,233,262,54,60,54,61,87,,"CCGT D1_Integrated Programme Schedule;CIVILS;CONSTRUCTION;Cooling Water System;Diversion Culvert (a.k.a. Intake Box Culvert)",1,2,0.0000272024,0.0018311292,0.0195320448,10,0.0,0.000209244,0.0068493151,0.0061538462,0.0410625,0.0046997389,0.0617760618,0.0224215247,0.0,0.0524499399
1.4.2.12.12-31,IBC10280,"Diversion Culvert - Trim the interfacing sheet pile wall adjoining Pumping Station to -5.5 mPD",7112,"CCGTD1_IPS",TT_Task,"58717",-,-,-,100,TK_Complete,17/01/2020,07/11/2019,18/01/2020,21/11/2019,"","","IBC10290 FF","IBC10290",233,259,233,261,54,60,54,61,88,,"CCGT D1_Integrated Programme Schedule;CIVILS;CONSTRUCTION;Cooling Water System;Diversion Culvert (a.k.a. Intake Box Culvert)",0,1,0.0,0.0006103764,0.0,1,0.0,0.0000812387,0.0,0.0030769231,0.0,0.0015665796,0.0,0.0022421525,0.0,0.0
1.4.2.12.12-32,IBC10290,"Diversion Culvert (C1) - Connect Diversion Culvert to Pumping Station",7112,"CCGTD1_IPS",TT_Task,"58717",-,-,-,100,TK_Complete,18/01/2020,28/11/2019,18/01/2020,28/11/2019,"IBC10280 FF,PPS10380 FS,IBC10270 FF","IBC10280,PPS10380,IBC10270","IBC10360 FS","IBC10360",233,262,233,262,54,61,54,61,88,,"CCGT D1_Integrated Programme Schedule;CIVILS;CONSTRUCTION;Cooling Water System;Diversion Culvert (a.k.a. Intake Box Culvert)",3,1,0.0000034365,0.0004069176,0.0207527976,0,1.0,0.0000812387,0.0205479452,0.0030769231,0.0051875,0.0010443864,0.0656370656,0.0,1.0,0.0
1.4.2.12.12-33,IBC10300,"Diversion Culvert - Backfill and  reinstate quay wall concrete block to 0.5m below 3rd layer of struts",7112,"CCGTD1_IPS",TT_Task,"58717",-,-,-,100,TK_Complete,02/01/2020,03/12/2019,06/01/2020,24/12/2019,"IBC10270 FS","IBC10270","IBC10310 FF","IBC10310",231,263,231,266,53,61,54,62,86,,"CCGT D1_Integrated Programme Schedule;CIVILS;CONSTRUCTION;Cooling Water System;Diversion Culvert (a.k.a. Intake Box Culvert)",1,1,0.0000200809,0.0014242116,0.0197355036,4,0.0,0.0002593786,0.0068493151,0.0030769231,0.0303125,0.0036553525,0.0624195624,0.0089686099,0.0,0.0729924654
1.4.2.12.12-34,IBC10240,"Diversion Culvert - Backfill void between culvert and pipe pile wall to 0.5m below 4th layer of struts",7112,"CCGTD1_IPS",TT_Task,"58717",-,-,-,100,TK_Complete,04/01/2020,04/11/2019,04/01/2020,04/11/2019,"IBC10230 FF","IBC10230","IBC10250 FS","IBC10250",231,259,231,259,54,60,54,60,87,,"CCGT D1_Integrated Programme Schedule;CIVILS;CONSTRUCTION;Cooling Water System;Diversion Culvert (a.k.a. Intake Box Culvert)",1,1,0.000034241,0.0022380468,0.0191251272,0,1.0,0.0000812387,0.0068493151,0.0030769231,0.0516875,0.0057441253,0.0604890605,0.0,1.0,0.0
1.4.2.12.12-35,IBC10310,"Diversion Culvert - Remove 3rd layer of struts",7112,"CCGTD1_IPS",TT_Task,"58717",-,-,-,100,TK_Complete,07/01/2020,07/12/2019,08/01/2020,24/12/2019,"IBC10300 FF","IBC10300","IBC10320 FS","IBC10320",231,264,232,266,54,61,54,62,87,,"CCGT D1_Integrated Programme Schedule;CIVILS;CONSTRUCTION;Cooling Water System;Diversion Culvert (a.k.a. Intake Box Culvert)",1,1,0.0000163131,0.0012207528,0.0199389624,1,0.0,0.0003021254,0.0068493151,0.0030769231,0.024625,0.0031331593,0.0630630631,0.0022421525,0.0,0.0905078876
1.4.2.12.12-36,IBC10320,"Diversion Culvert - Backfill and  reinstate quay wall concrete block to 0.5m below 2nd layer of struts",7112,"CCGTD1_IPS",TT_Task,"58717",-,-,-,100,TK_Complete,09/01/2020,08/12/2019,13/01/2020,28/12/2019,"IBC10310 FS","IBC10310","IBC10330 FF","IBC10330",232,264,232,267,54,61,54,62,88,,"CCGT D1_Integrated Programme Schedule;CIVILS;CONSTRUCTION;Cooling Water System;Diversion Culvert (a.k.a. Intake Box Culvert)",1,1,0.0000124626,0.001017294,0.0201424212,4,0.0,0.000338598,0.0068493151,0.0030769231,0.0188125,0.0026109661,0.0637065637,0.0089686099,0.0,0.1054524737
1.4.2.12.12-37,IBC10330,"Diversion Culvert - Remove 2nd layer of struts",7112,"CCGTD1_IPS",TT_Task,"58717",-,-,-,100,TK_Complete,14/01/2020,11/12/2019,15/01/2020,28/12/2019,"IBC10320 FF","IBC10320","IBC10340 FS","IBC10340",232,264,233,267,54,61,54,62,88,,"CCGT D1_Integrated Programme Schedule;CIVILS;CONSTRUCTION;Cooling Water System;Diversion Culvert (a.k.a. Intake Box Culvert)",1,1,0.0000085292,0.0008138352,0.02034588,1,0.0,0.0003696143,0.0068493151,0.0030769231,0.012875,0.0020887728,0.0643500644,0.0022421525,0.0,0.1181613545
1.4.2.12.12-38,IBC10340,"Diversion Culvert - Backfill and  reinstate quay wall concrete block to 0.5m below 1st layer of struts (incl' utilities)",7112,"CCGTD1_IPS",TT_Task,"58717",-,-,-,100,TK_Complete,02/01/2020,30/12/2019,06/01/2020,15/02/2020,"IBC10330 FS","IBC10330","IBC10350 FS","IBC10350",231,267,231,274,53,62,54,63,86,,"CCGT D1_Integrated Programme Schedule;CIVILS;CONSTRUCTION;Cooling Water System;Diversion Culvert (a.k.a. Intake Box Culvert)",1,1,0.000004513,0.0006103764,0.0205493388,4,0.0,0.000396007,0.0068493151,0.0030769231,0.0068125,0.0015665796,0.064993565,0.0089686099,0.0,0.1289756874
1.4.2.12.12-39,IBC10350,"Diversion Culvert - Remove 1st layer of struts",7112,"CCGTD1_IPS",TT_Task,"58717",-,-,-,100,TK_Complete,17/02/2020,17/02/2020,18/02/2020,18/02/2020,"IBC10340 FS","IBC10340","IBC10360 FS","IBC10360",237,274,237,274,55,64,55,64,89,,"CCGT D1_Integrated Programme Schedule;CIVILS;CONSTRUCTION;Cooling Water System;Diversion Culvert (a.k.a. Intake Box Culvert)",1,1,0.000000414,0.0004069176,0.0207527976,1,1.0,0.0004185845,0.0068493151,0.0030769231,0.000625,0.0010443864,0.0656370656,0.0022421525,1.0,0.1382268136
1.4.2.12.12-40,IBC10360,"Diversion Culvert - Backfill and  reinstate to ground level including crest wall and fence",7112,"CCGTD1_IPS",TT_Task,"58717",-,-,-,100,TK_Complete,19/02/2020,19/02/2020,25/02/2020,25/02/2020,"IBC10350 FS,IBC10355 FS,IBC10290 FS","IBC10350,IBC10355,IBC10290","SW1.1 FF","SW1.1",238,274,238,275,55,64,55,64,89,,"CCGT D1_Integrated Programme Schedule;CIVILS;CONSTRUCTION;Cooling Water System;Diversion Culvert (a.k.a. Intake Box Culvert)",3,1,0.0000032295,0.0002034588,0.0231943032,6,1.0,0.0013823695,0.0205479452,0.0030769231,0.004875,0.0005221932,0.0733590734,0.0134529148,1.0,0.533135851
1.4.2.12.12-41,IBC10355,"Diversion Culvert (C2) - Construction of Diversion Culvert including excavation & ELS",7112,"CCGTD1_IPS",TT_Task,"58717",-,-,-,100,TK_Complete,10/01/2020,02/11/2019,15/02/2020,15/12/2019,"IBC10125 FS,IBC10220 FS,ICM10220 FS","IBC10125,IBC10220,ICM10220","IBC10360 FS","IBC10360",232,259,237,265,54,60,55,61,88,,"CCGT D1_Integrated Programme Schedule;CIVILS;CONSTRUCTION;Cooling Water System;Diversion Culvert (a.k.a. Intake Box Culvert)",3,1,0.0000038506,0.0004069176,0.0189216684,36,0.0,0.0010430051,0.0205479452,0.0030769231,0.0058125,0.0010443864,0.0598455598,0.0807174888,0.0,0.3940819384
1.4.2.12.12-42,IBC10120,"Diversion Culvert - BD Consent for Commencement of Excavation & ELS (C1)",7112,"CCGTD1_IPS",TT_Task,"58717",-,-,-,100,TK_Complete,15/08/2019,06/06/2019,11/09/2019,16/07/2019,"IBC10110 FF","IBC10110","IBC10160 FS","IBC10160",211,237,215,243,49,55,50,56,69,,"CCGT D1_Integrated Programme Schedule;CIVILS;CONSTRUCTION;Cooling Water System;Diversion Culvert (a.k.a. Intake Box Culvert)",1,1,0.0000226893,0.0044760936,0.007121058,27,0.0,0.0005308324,0.0068493151,0.0030769231,0.03425,0.0114882507,0.0225225225,0.0605381166,0.0,0.1842201682
1.4.2.12.12-43,IBC10115,"Diversion Culvert - Pumping Test and Report Submission (C2)",7112,"CCGTD1_IPS",TT_Task,"58717",-,-,-,100,TK_Complete,01/08/2019,08/06/2019,21/08/2019,11/07/2019,"IBC10110 FS","IBC10110","IBC10125 FF","IBC10125",209,238,212,242,48,55,49,56,68,,"CCGT D1_Integrated Programme Schedule;CIVILS;CONSTRUCTION;Cooling Water System;Diversion Culvert (a.k.a. Intake Box Culvert)",1,1,0.0000055067,0.0008138352,0.007121058,20,0.0,0.0004142711,0.0068493151,0.0030769231,0.0083125,0.0020887728,0.0225225225,0.0448430493,0.0,0.1364593839
1.4.2.12.12-44,IBC10125,"Diversion Culvert - BD Consent for Commencement of Excavation & ELS (C2) [APPROVAL DEEMED]",7112,"CCGTD1_IPS",TT_Task,"58717",-,-,-,100,TK_Complete,01/08/2019,12/07/2019,28/08/2019,04/09/2019,"IBC10115 FF","IBC10115","IBC10355 FS","IBC10355",209,243,213,250,48,56,49,58,68,,"CCGT D1_Integrated Programme Schedule;CIVILS;CONSTRUCTION;Cooling Water System;Diversion Culvert (a.k.a. Intake Box Culvert)",1,1,0.0000041818,0.0006103764,0.0073245168,27,0.0,0.0004388052,0.0068493151,0.0030769231,0.0063125,0.0015665796,0.0231660232,0.0605381166,0.0,0.1465121946
1.4.2.12.12-45,EV019120,"Event 019 - Diversion Culvert C1 plate load test",7112,"CCGTD1_IPS",TT_Task,"58717",-,-,-,100,TK_Complete,01/11/2019,04/10/2019,05/11/2019,08/10/2019,"IBC10220 FF","IBC10220","IBC10230 FS","IBC10230",222,255,222,255,51,59,52,59,81,,"CCGT D1_Integrated Programme Schedule;CIVILS;CONSTRUCTION;Cooling Water System;Diversion Culvert (a.k.a. Intake Box Culvert)",1,1,0.0000352761,0.0026449644,0.0181078332,4,1.0,0.0001317909,0.0068493151,0.0030769231,0.05325,0.0067885117,0.0572715573,0.0089686099,1.0,0.0207136621
1.4.2.12.13,58716,"Intake Box Culvert Modification (a.k.a. SCW Pump Sump A&A / Diversion Chamber)",7112,"CCGTD1_IPS",WBS,"58715",,,,100,Complete,10/09/2017,07/09/2017,16/02/2020,28/02/2020,,,,,110,146,237,276,25,34,55,64,,,"CCGT D1_Integrated Programme Schedule;CIVILS;CONSTRUCTION;Cooling Water System"
1.4.2.12.13-1,EV026010,"Event 026 - Tie beam amendment (i.e. steel tie beam, phased consent for excav below +3.5, delete TAM & CS4)[WITHDRAWN]",7112,"CCGTD1_IPS",TT_Task,"58716",-,-,-,100,TK_Complete,26/08/2018,24/08/2018,30/08/2018,28/08/2018,"","","EV026020 FS","EV026020",160,197,161,197,37,45,37,46,35,,"CCGT D1_Integrated Programme Schedule;CIVILS;CONSTRUCTION;Cooling Water System;Intake Box Culvert Modification (a.k.a. SCW Pump Sump A&A / Diversion Chamber)",0,1,0.0,0.0044760936,0.0,4,1.0,0.0000812387,0.0,0.0030769231,0.0,0.0114882507,0.0,0.0089686099,1.0,0.0
1.4.2.12.13-2,EV026020,"Event 026 - Resubmission of tie beam amendment",7112,"CCGTD1_IPS",TT_Task,"58716",-,-,-,100,TK_Complete,13/12/2018,13/09/2018,11/01/2019,14/11/2018,"EV026010 FS","EV026010","ICM00035 FS,EV026030 FS","ICM00035,EV026030",176,199,180,208,41,46,42,48,42,,"CCGT D1_Integrated Programme Schedule;CIVILS;CONSTRUCTION;Cooling Water System;Intake Box Culvert Modification (a.k.a. SCW Pump Sump A&A / Diversion Chamber)",1,2,0.0000008695,0.0042726348,0.0002034588,29,0.0,0.0001503957,0.0068493151,0.0061538462,0.0013125,0.0109660574,0.0006435006,0.0650224215,0.0,0.0283369572
1.4.2.12.13-3,EV017510,"Event 017(I) - Advanced Precautionary Grouting",7112,"CCGTD1_IPS",TT_Task,"58716",-,-,-,100,TK_Complete,26/01/2019,27/12/2018,08/03/2019,09/02/2019,"ICM00080 FS,EV026030 FS","ICM00080,EV026030","ICM00035 FS,ICM10029 FS,ICM10020 FF","ICM00035,ICM10029,ICM10020",182,214,188,221,42,50,43,51,44,,"CCGT D1_Integrated Programme Schedule;CIVILS;CONSTRUCTION;Cooling Water System;Intake Box Culvert Modification (a.k.a. SCW Pump Sump A&A / Diversion Chamber)",2,3,0.0000063348,0.0038657172,0.0032553408,41,0.2,0.0003068568,0.0136986301,0.0092307692,0.0095625,0.009921671,0.0102960103,0.0919282511,0.2,0.0924465977
1.4.2.12.13-4,EV026030,"Event 026 - BA8 consent for APG",7112,"CCGTD1_IPS",TT_Task,"58716",-,-,-,100,TK_Complete,26/12/2018,14/11/2018,22/01/2019,14/12/2018,"EV026020 FS","EV026020","EV017510 FS","EV017510",178,208,181,213,41,48,42,49,42,,"CCGT D1_Integrated Programme Schedule;CIVILS;CONSTRUCTION;Cooling Water System;Intake Box Culvert Modification (a.k.a. SCW Pump Sump A&A / Diversion Chamber)",1,1,0.0000008281,0.004069176,0.0004069176,27,0.8,0.0001452414,0.0068493151,0.0030769231,0.00125,0.0104438642,0.0012870013,0.0605381166,0.8,0.02622497
1.4.2.12.13-5,EV043010,"Event 043 - RP11 encounter underground obstruction",7112,"CCGTD1_IPS",TT_Task,"58716",-,-,-,100,TK_Complete,26/11/2018,29/09/2018,09/12/2018,12/10/2018,"","","","",173,202,175,204,40,47,40,47,39,,"CCGT D1_Integrated Programme Schedule;CIVILS;CONSTRUCTION;Cooling Water System;Intake Box Culvert Modification (a.k.a. SCW Pump Sump A&A / Diversion Chamber)",0,0,0.0,0.0,0.0,13,1.0,0.0000812387,0.0,0.0,0.0,0.0,0.0,0.0291479821,1.0,0.0
1.4.2.12.13-6,EV043020,"Event 043 - RP14, 15, 16 encounter underground obstruction",7112,"CCGTD1_IPS",TT_Task,"58716",-,-,-,100,TK_Complete,26/11/2018,01/11/2018,23/12/2018,29/11/2018,"","","EV043030 FS","EV043030",173,206,177,210,40,48,41,49,39,,"CCGT D1_Integrated Programme Schedule;CIVILS;CONSTRUCTION;Cooling Water System;Intake Box Culvert Modification (a.k.a. SCW Pump Sump A&A / Diversion Chamber)",0,1,0.0,0.0034587996,0.0,27,1.0,0.0000812387,0.0,0.0030769231,0.0,0.0088772846,0.0,0.0605381166,1.0,0.0
1.4.2.12.13-7,EV043030,"Event 043 - Socketed H-pile amendment (Type II) [APPROVAL DEEMED]",7112,"CCGTD1_IPS",TT_Task,"58716",-,-,-,100,TK_Complete,26/01/2019,27/12/2018,24/02/2019,25/01/2019,"EV043020 FS","EV043020","ICM00030 FF","ICM00030",182,214,186,219,42,50,43,51,44,,"CCGT D1_Integrated Programme Schedule;CIVILS;CONSTRUCTION;Cooling Water System;Intake Box Culvert Modification (a.k.a. SCW Pump Sump A&A / Diversion Chamber)",1,1,0.0000006625,0.0032553408,0.0002034588,29,1.0,0.0001503957,0.0068493151,0.0030769231,0.001,0.0083550914,0.0006435006,0.0650224215,1.0,0.0283369572
1.4.2.12.13-8,EV007010,"Event 007 - Approval of Site Arrangement and TTA",7112,"CCGTD1_IPS",TT_Task,"58716",-,-,-,100,TK_Complete,23/10/2017,07/09/2017,23/10/2017,29/11/2017,"","","EV008010 FS,ICM00010 FS","EV008010,ICM00010",116,146,116,158,27,34,27,37,13,,"CCGT D1_Integrated Programme Schedule;CIVILS;CONSTRUCTION;Cooling Water System;Intake Box Culvert Modification (a.k.a. SCW Pump Sump A&A / Diversion Chamber)",0,2,0.0,0.0144455748,0.0,0,0.0,0.0000812387,0.0,0.0061538462,0.0,0.037075718,0.0,0.0,0.0,0.0
1.4.2.12.13-9,EV008010,"Event 008 - Declaration of unplanted area / Isolation of SCWP(?)",7112,"CCGTD1_IPS",TT_Task,"58716",-,-,-,100,TK_Complete,13/12/2017,06/12/2017,05/01/2018,16/12/2017,"EV007010 FS","EV007010","ICM00020 FS","ICM00020",124,159,127,161,28,37,29,37,16,,"CCGT D1_Integrated Programme Schedule;CIVILS;CONSTRUCTION;Cooling Water System;Intake Box Culvert Modification (a.k.a. SCW Pump Sump A&A / Diversion Chamber)",1,1,0.0000006004,0.0046795524,0.0002034588,23,1.0,0.0001091442,0.0068493151,0.0030769231,0.00090625,0.0120104439,0.0006435006,0.0515695067,1.0,0.0114342108
1.4.2.12.13-10,EV007010a,"Event 007 - Issue of LWC for barricading the areas",7112,"CCGTD1_IPS",TT_Task,"58716",-,-,-,100,TK_Complete,27/11/2017,30/11/2017,27/11/2017,05/12/2017,"","","EV007010b FS","EV007010b",121,158,121,159,28,37,28,37,15,,"CCGT D1_Integrated Programme Schedule;CIVILS;CONSTRUCTION;Cooling Water System;Intake Box Culvert Modification (a.k.a. SCW Pump Sump A&A / Diversion Chamber)",0,1,0.0,0.0002034588,0.0,0,0.6,0.0000812387,0.0,0.0030769231,0.0,0.0005221932,0.0,0.0,0.6,0.0
1.4.2.12.13-11,EV007010b,"Event 007 - Barrication as per approved site layout and TTM",7112,"CCGTD1_IPS",TT_Task,"58716",-,-,-,100,TK_Complete,27/11/2017,05/12/2017,27/11/2017,05/12/2017,"EV007010a FS","EV007010a","","",121,159,121,159,28,37,28,37,15,,"CCGT D1_Integrated Programme Schedule;CIVILS;CONSTRUCTION;Cooling Water System;Intake Box Culvert Modification (a.k.a. SCW Pump Sump A&A / Diversion Chamber)",1,0,0.0,0.0,0.0002034588,0,1.0,0.0000812387,0.0068493151,0.0,0.0,0.0,0.0006435006,0.0,1.0,0.0
1.4.2.12.13-12,EV008010a,"Event 008 - Excavation Permit",7112,"CCGTD1_IPS",TT_Task,"58716",-,-,-,100,TK_Complete,27/11/2017,15/12/2017,27/11/2017,29/12/2017,"","","EV009010 FS","EV009010",121,161,121,163,28,37,28,38,15,,"CCGT D1_Integrated Programme Schedule;CIVILS;CONSTRUCTION;Cooling Water System;Intake Box Culvert Modification (a.k.a. SCW Pump Sump A&A / Diversion Chamber)",0,1,0.0,0.0044760936,0.0,0,0.0,0.0000812387,0.0,0.0030769231,0.0,0.0114882507,0.0,0.0,0.0,0.0
1.4.2.12.13-13,EV009010,"Event 009 - Additional Pre-drill (2 out of 4 nos.)",7112,"CCGTD1_IPS",TT_Task,"58716",-,-,-,100,TK_Complete,23/04/2018,20/04/2018,28/05/2018,04/05/2018,"EV008010a FS,SCWtaBA8 FS,ICM00020 FS","EV008010a,SCWtaBA8,ICM00020","ICM00025 FS,EV009015 FS","ICM00025,EV009015",142,179,147,181,33,41,34,42,25,,"CCGT D1_Integrated Programme Schedule;CIVILS;CONSTRUCTION;Cooling Water System;Intake Box Culvert Modification (a.k.a. SCW Pump Sump A&A / Diversion Chamber)",3,2,0.0000016148,0.0042726348,0.002034588,35,1.0,0.0002710891,0.0205479452,0.0061538462,0.0024375,0.0109660574,0.0064350064,0.0784753363,1.0,0.0777908457
1.4.2.12.13-14,ICM00010,"Intake Culvert Modif - Utilities Diversion",7112,"CCGTD1_IPS",TT_Task,"58716",-,-,-,100,TK_Complete,26/05/2018,25/04/2018,29/06/2018,21/06/2018,"COMM FS,EV001010 FS,SCWd1BA8 FS,EV007010 FS","COMM,EV001010,SCWd1BA8,EV007010","ICM00022 FS,IBC00010 FS,ICM00050 FS","ICM00022,IBC00010,ICM00050",147,179,152,187,34,41,35,43,28,,"CCGT D1_Integrated Programme Schedule;CIVILS;CONSTRUCTION;Cooling Water System;Intake Box Culvert Modification (a.k.a. SCW Pump Sump A&A / Diversion Chamber)",4,3,0.0000149261,0.0124109868,0.0016276704,34,0.0,0.0002281133,0.0273972603,0.0092307692,0.02253125,0.0318537859,0.0051480051,0.0762331839,0.0,0.0601815871
1.4.2.12.13-15,ICM00020,"Intake Culvert Modif - Remove parts of existing gantry crane",7112,"CCGTD1_IPS",TT_Task,"58716",-,-,-,100,TK_Complete,01/06/2018,06/04/2018,16/06/2018,21/04/2018,"EV008010 FS,EV018010 FS","EV008010,EV018010","ICM00025 FS,EV009010 FS","ICM00025,EV009010",148,177,150,179,34,41,35,41,29,,"CCGT D1_Integrated Programme Schedule;CIVILS;CONSTRUCTION;Cooling Water System;Intake Box Culvert Modification (a.k.a. SCW Pump Sump A&A / Diversion Chamber)",1,2,0.0000014698,0.0044760936,0.0004069176,15,1.0,0.0001741415,0.0068493151,0.0061538462,0.00221875,0.0114882507,0.0012870013,0.033632287,1.0,0.0380667572
1.4.2.12.13-16,ICM00030,"Intake Culvert Modif - Install socket H-pile (RP14, RP15, RP16)",7112,"CCGTD1_IPS",TT_Task,"58716",-,-,-,100,TK_Complete,08/02/2019,12/01/2019,22/02/2019,31/01/2019,"ICM00025 FS,EV043030 FF","ICM00025,EV043030","ICM00040 FS,ICM10045 FS","ICM00040,ICM10045",184,217,186,219,43,50,43,51,47,,"CCGT D1_Integrated Programme Schedule;CIVILS;CONSTRUCTION;Cooling Water System;Intake Box Culvert Modification (a.k.a. SCW Pump Sump A&A / Diversion Chamber)",2,2,0.0000022358,0.003051882,0.0028484232,14,0.4,0.0003169275,0.0136986301,0.0061538462,0.003375,0.0078328982,0.009009009,0.0313901345,0.4,0.0965730462
1.4.2.12.13-17,ICM00040,"Intake Culvert Modif - Construct Tie-back system",7112,"CCGTD1_IPS",TT_Task,"58716",-,-,-,100,TK_Complete,10/04/2019,25/03/2019,21/05/2019,15/04/2019,"ICM00036 FF,ICM00022 FF,ICM00030 FS","ICM00036,ICM00022,ICM00030","ICM10040 FS,ICM10030 FS","ICM10040,ICM10030",193,227,198,230,45,53,46,53,53,,"CCGT D1_Integrated Programme Schedule;CIVILS;CONSTRUCTION;Cooling Water System;Intake Box Culvert Modification (a.k.a. SCW Pump Sump A&A / Diversion Chamber)",3,2,0.0000062313,0.0026449644,0.0065106816,41,1.0,0.0006655077,0.0205479452,0.0061538462,0.00940625,0.0067885117,0.0205920206,0.0919282511,1.0,0.2394031066
1.4.2.12.13-18,ICM00050,"Intake Culvert Modif - Remove parts of existing crest wall and fence",7112,"CCGTD1_IPS",TT_Task,"58716",-,-,-,100,TK_Complete,10/09/2018,10/09/2018,29/09/2018,09/10/2018,"ICM00010 FS,ICM00060 FS","ICM00010,ICM00060","IBC10060 FS,ICM00070 FS","IBC10060,ICM00070",162,199,165,203,37,46,38,47,36,,"CCGT D1_Integrated Programme Schedule;CIVILS;CONSTRUCTION;Cooling Water System;Intake Box Culvert Modification (a.k.a. SCW Pump Sump A&A / Diversion Chamber)",2,2,0.000004306,0.0113936928,0.002034588,19,0.0,0.0002527917,0.0136986301,0.0061538462,0.0065,0.0292428198,0.0064350064,0.0426008969,0.0,0.0702935239
1.4.2.12.13-19,ICM00060,"Intake Culvert Modif - Install silt curtain",7112,"CCGTD1_IPS",TT_Task,"58716",-,-,-,100,TK_Complete,27/08/2018,21/08/2018,28/08/2018,23/08/2018,"","","ICM00070 FS,IBC10050 FF,ICM00050 FS","ICM00070,IBC10050,ICM00050",160,196,160,196,37,45,37,45,35,,"CCGT D1_Integrated Programme Schedule;CIVILS;CONSTRUCTION;Cooling Water System;Intake Box Culvert Modification (a.k.a. SCW Pump Sump A&A / Diversion Chamber)",0,3,0.0,0.0118006104,0.0,1,0.8,0.0000812387,0.0,0.0092307692,0.0,0.0302872063,0.0,0.0022421525,0.8,0.0
1.4.2.12.13-20,ICM00070,"Intake Culvert Modif - Remove rock armour",7112,"CCGTD1_IPS",TT_Task,"58716",-,-,-,100,TK_Complete,26/11/2018,10/10/2018,01/12/2018,14/10/2018,"ICM00060 FS,ICM00050 FS","ICM00060,ICM00050","ICM00080 FS,IBC10070 FS","ICM00080,IBC10070",173,203,174,204,40,47,40,47,39,,"CCGT D1_Integrated Programme Schedule;CIVILS;CONSTRUCTION;Cooling Water System;Intake Box Culvert Modification (a.k.a. SCW Pump Sump A&A / Diversion Chamber)",2,2,0.0000060657,0.0109867752,0.0022380468,5,1.0,0.0001583694,0.0136986301,0.0061538462,0.00915625,0.0281984334,0.0070785071,0.0112107623,1.0,0.0316041307
1.4.2.12.13-21,ICM00080,"Intake Culvert Modif - Rock fill to form a working platform at +3.5mPD",7112,"CCGTD1_IPS",TT_Task,"58716",-,-,-,100,TK_Complete,03/12/2018,15/10/2018,05/12/2018,14/11/2018,"ICM00070 FS","ICM00070","EV017510 FS","EV017510",174,204,175,208,40,47,40,48,41,,"CCGT D1_Integrated Programme Schedule;CIVILS;CONSTRUCTION;Cooling Water System;Intake Box Culvert Modification (a.k.a. SCW Pump Sump A&A / Diversion Chamber)",1,1,0.000004513,0.004069176,0.0024415056,2,0.0,0.0001197664,0.0068493151,0.0030769231,0.0068125,0.0104438642,0.0077220077,0.0044843049,0.0,0.0157866491
1.4.2.12.13-22,ICM10010,"Intake Culvert Modif - 406 Dia. Pipe Pile Walls (CS2)",7112,"CCGTD1_IPS",TT_Task,"58716",-,-,-,100,TK_Complete,26/11/2018,24/11/2018,21/01/2019,14/01/2019,"","","ICM10020 FF","ICM10020",173,210,181,217,40,49,42,50,39,,"CCGT D1_Integrated Programme Schedule;CIVILS;CONSTRUCTION;Cooling Water System;Intake Box Culvert Modification (a.k.a. SCW Pump Sump A&A / Diversion Chamber)",0,1,0.0,0.0038657172,0.0,56,1.0,0.0000812387,0.0,0.0030769231,0.0,0.009921671,0.0,0.1255605381,1.0,0.0
1.4.2.12.13-23,ICM10020,"Intake Culvert Modif - Grout Curtain (behind CS2)",7112,"CCGTD1_IPS",TT_Task,"58716",-,-,-,100,TK_Complete,26/01/2019,16/01/2019,08/03/2019,23/02/2019,"EV017510 FF,ICM10010 FF","EV017510,ICM10010","ICM00035 FS,ICM10029 FS","ICM00035,ICM10029",182,217,188,223,42,50,43,52,44,,"CCGT D1_Integrated Programme Schedule;CIVILS;CONSTRUCTION;Cooling Water System;Intake Box Culvert Modification (a.k.a. SCW Pump Sump A&A / Diversion Chamber)",2,2,0.0000007453,0.0036622584,0.0036622584,41,1.0,0.0002631474,0.0136986301,0.0061538462,0.001125,0.0093994778,0.0115830116,0.0919282511,1.0,0.0745367533
1.4.2.12.13-24,ICM10030,"Intake Culvert Modif - Zone 2 Excavate to +2.425mPD",7112,"CCGTD1_IPS",TT_Task,"58716",-,-,-,100,TK_Complete,01/05/2019,10/04/2019,07/05/2019,18/04/2019,"ICM10029 FS,ICM00040 FS","ICM10029,ICM00040","ICM10040 FS","ICM10040",196,229,196,230,45,53,45,53,56,,"CCGT D1_Integrated Programme Schedule;CIVILS;CONSTRUCTION;Cooling Water System;Intake Box Culvert Modification (a.k.a. SCW Pump Sump A&A / Diversion Chamber)",2,1,0.0000003726,0.0024415056,0.0069175992,6,1.0,0.0004061618,0.0136986301,0.0030769231,0.0005625,0.0062663185,0.0218790219,0.0134529148,1.0,0.1331366204
1.4.2.12.13-25,ICM10040,"Intake Culvert Modif - Install twin batten waling frame",7112,"CCGTD1_IPS",TT_Task,"58716",-,-,-,100,TK_Complete,01/05/2019,22/04/2019,07/05/2019,26/04/2019,"ICM10030 FS,ICM00040 FS","ICM10030,ICM00040","ICM10050 FS","ICM10050",196,231,196,232,45,54,45,54,56,,"CCGT D1_Integrated Programme Schedule;CIVILS;CONSTRUCTION;Cooling Water System;Intake Box Culvert Modification (a.k.a. SCW Pump Sump A&A / Diversion Chamber)",2,1,0.0000051962,0.0022380468,0.007121058,6,1.0,0.0007110058,0.0136986301,0.0030769231,0.00784375,0.0057441253,0.0225225225,0.0134529148,1.0,0.2580458757
1.4.2.12.13-26,ICM10050,"Intake Culvert Modif - Excavate to top of existing intake culvert",7112,"CCGTD1_IPS",TT_Task,"58716",-,-,-,100,TK_Complete,01/05/2019,27/04/2019,07/05/2019,29/05/2019,"ICM10040 FS,ICM10045 FS","ICM10040,ICM10045","ICM10060 FS","ICM10060",196,232,196,236,45,54,45,55,56,,"CCGT D1_Integrated Programme Schedule;CIVILS;CONSTRUCTION;Cooling Water System;Intake Box Culvert Modification (a.k.a. SCW Pump Sump A&A / Diversion Chamber)",2,1,0.0000143258,0.002034588,0.0075279756,6,0.0,0.0011837913,0.0136986301,0.0030769231,0.021625,0.0052219321,0.0238095238,0.0134529148,0.0,0.4517688176
1.4.2.12.13-27,ICM10060,"Intake Culvert Modif - Install staging platform",7112,"CCGTD1_IPS",TT_Task,"58716",-,-,-,100,TK_Complete,06/06/2019,29/05/2019,11/07/2019,21/06/2019,"ICM10050 FS","ICM10050","ICM10080 FS","ICM10080",201,236,206,240,46,55,48,56,62,,"CCGT D1_Integrated Programme Schedule;CIVILS;CONSTRUCTION;Cooling Water System;Intake Box Culvert Modification (a.k.a. SCW Pump Sump A&A / Diversion Chamber)",1,1,0.0000131664,0.0018311292,0.0077314344,35,1.0,0.001091629,0.0068493151,0.0030769231,0.019875,0.0046997389,0.0244530245,0.0784753363,1.0,0.4140055048
1.4.2.12.13-28,ICM10070,"Intake Culvert Modif - Saw cut and remove the existing box culvert at the location of proposed diversion chamber",7112,"CCGTD1_IPS",TT_Task,"58716",-,-,-,100,TK_Complete,01/08/2019,18/07/2019,24/08/2019,24/09/2019,"ICM10080 FS","ICM10080","ICM10090 FS","ICM10090",209,243,212,253,48,56,49,59,68,,"CCGT D1_Integrated Programme Schedule;CIVILS;CONSTRUCTION;Cooling Water System;Intake Box Culvert Modification (a.k.a. SCW Pump Sump A&A / Diversion Chamber)",1,1,0.0000105994,0.0014242116,0.008138352,23,0.0,0.0009537195,0.0068493151,0.0030769231,0.016,0.0036553525,0.0257400257,0.0515695067,0.0,0.3574973258
1.4.2.12.13-29,ICM10080,"Intake Culvert Modif - Excavate either side of culvert to -5.4mPD",7112,"CCGTD1_IPS",TT_Task,"58716",-,-,-,100,TK_Complete,10/08/2019,22/06/2019,11/08/2019,17/07/2019,"ICM10060 FS","ICM10060","ICM10070 FS","ICM10070",210,240,210,243,49,56,49,56,69,,"CCGT D1_Integrated Programme Schedule;CIVILS;CONSTRUCTION;Cooling Water System;Intake Box Culvert Modification (a.k.a. SCW Pump Sump A&A / Diversion Chamber)",1,1,0.0000119243,0.0016276704,0.0079348932,1,0.0,0.0010153077,0.0068493151,0.0030769231,0.018,0.0041775457,0.0250965251,0.0022421525,0.0,0.3827329748
1.4.2.12.13-30,ICM10090,"Intake Culvert Modif - Prepare bedding and leveling",7112,"CCGTD1_IPS",TT_Task,"58716",-,-,-,100,TK_Complete,01/11/2019,25/09/2019,06/11/2019,15/10/2019,"ICM10070 FS","ICM10070","ICM10100 FS","ICM10100",222,253,223,256,51,59,52,59,80,,"CCGT D1_Integrated Programme Schedule;CIVILS;CONSTRUCTION;Cooling Water System;Intake Box Culvert Modification (a.k.a. SCW Pump Sump A&A / Diversion Chamber)",1,1,0.0000091917,0.0012207528,0.0083418108,5,0.0,0.0009130196,0.0068493151,0.0030769231,0.013875,0.0031331593,0.0263835264,0.0112107623,0.0,0.3408206268
1.4.2.12.13-31,ICM10100,"Intake Culvert Modif - Install precast segments for the base slab",7112,"CCGTD1_IPS",TT_Task,"58716",-,-,-,100,TK_Complete,01/11/2019,16/10/2019,01/11/2019,17/10/2019,"ICM10090 FS,SCWp2BA8 FS,PROMA050 FS,SCWp1BA8 FS","ICM10090,SCWp2BA8,PROMA050,SCWp1BA8","ICM10120 FS","ICM10120",222,256,222,256,51,59,51,59,80,,"CCGT D1_Integrated Programme Schedule;CIVILS;CONSTRUCTION;Cooling Water System;Intake Box Culvert Modification (a.k.a. SCW Pump Sump A&A / Diversion Chamber)",4,1,0.000010558,0.001017294,0.0103763988,0,1.0,0.0000812387,0.0273972603,0.0030769231,0.0159375,0.0026109661,0.0328185328,0.0,1.0,0.0
1.4.2.12.13-32,ICM10110,"Intake Culvert Modif - Tremie concrete to segment joints of base slab",7112,"CCGTD1_IPS",TT_Task,"58716",-,-,-,100,TK_Complete,01/11/2019,21/10/2019,01/11/2019,25/10/2019,"ICM10140 FS","ICM10140","ICM10130 FF","ICM10130",222,257,222,258,51,60,51,60,80,,"CCGT D1_Integrated Programme Schedule;CIVILS;CONSTRUCTION;Cooling Water System;Intake Box Culvert Modification (a.k.a. SCW Pump Sump A&A / Diversion Chamber)",1,1,0.0000044716,0.0004069176,0.0109867752,0,0.6,0.0000812387,0.0068493151,0.0030769231,0.00675,0.0010443864,0.0347490347,0.0,0.6,0.0
1.4.2.12.13-33,ICM10120,"Intake Culvert Modif - Install precast segments for the columns and side walls",7112,"CCGTD1_IPS",TT_Task,"58716",-,-,-,100,TK_Complete,03/11/2019,18/10/2019,04/11/2019,19/10/2019,"ICM10100 FS","ICM10100","ICM10140 FS","ICM10140",222,257,222,257,51,59,51,60,81,,"CCGT D1_Integrated Programme Schedule;CIVILS;CONSTRUCTION;Cooling Water System;Intake Box Culvert Modification (a.k.a. SCW Pump Sump A&A / Diversion Chamber)",1,1,0.000008612,0.0008138352,0.0105798576,1,1.0,0.0001503957,0.0068493151,0.0030769231,0.013,0.0020887728,0.0334620335,0.0022421525,1.0,0.0283369572
1.4.2.12.13-34,ICM10130,"Intake Culvert Modif - Tremie concrete to segment joints of columns and side walls",7112,"CCGTD1_IPS",TT_Task,"58716",-,-,-,100,TK_Complete,02/11/2019,21/10/2019,03/11/2019,15/11/2019,"ICM10110 FF","ICM10110","ICM10150 SS","ICM10150",222,257,222,261,51,60,51,60,81,,"CCGT D1_Integrated Programme Schedule;CIVILS;CONSTRUCTION;Cooling Water System;Intake Box Culvert Modification (a.k.a. SCW Pump Sump A&A / Diversion Chamber)",1,1,0.0000022772,0.0002034588,0.011190234,1,0.0,0.0001503957,0.0068493151,0.0030769231,0.0034375,0.0005221932,0.0353925354,0.0022421525,0.0,0.0283369572
1.4.2.12.13-35,ICM10140,"Intake Culvert Modif - Install precast segments for top slab and beams",7112,"CCGTD1_IPS",TT_Task,"58716",-,-,-,100,TK_Complete,07/11/2019,20/10/2019,07/11/2019,20/10/2019,"ICM10120 FS","ICM10120","ICM10110 FS","ICM10110",223,257,223,257,52,60,52,60,81,,"CCGT D1_Integrated Programme Schedule;CIVILS;CONSTRUCTION;Cooling Water System;Intake Box Culvert Modification (a.k.a. SCW Pump Sump A&A / Diversion Chamber)",1,1,0.0000065832,0.0006103764,0.0107833164,0,1.0,0.0000812387,0.0068493151,0.0030769231,0.0099375,0.0015665796,0.0341055341,0.0,1.0,0.0
1.4.2.12.13-36,ICM10150,"Intake Culvert Modif - Tremie concrete to segment joints of top slab",7112,"CCGTD1_IPS",TT_Task,"58716",-,-,-,100,TK_Complete,04/11/2019,22/10/2019,04/11/2019,28/10/2019,"ICM10130 SS","ICM10130","","",222,257,222,258,51,60,51,60,81,,"CCGT D1_Integrated Programme Schedule;CIVILS;CONSTRUCTION;Cooling Water System;Intake Box Culvert Modification (a.k.a. SCW Pump Sump A&A / Diversion Chamber)",1,0,0.0,0.0,0.0113936928,0,0.4,0.0000812387,0.0068493151,0.0,0.0,0.0,0.036036036,0.0,0.4,0.0
1.4.2.12.13-37,ICM10170,"Intake Culvert Modif - Backfill between the proposed chamber and pipe pile walls",7112,"CCGTD1_IPS",TT_Task,"58716",-,-,-,100,TK_Complete,23/11/2019,21/10/2019,04/12/2019,15/11/2019,"","","ICM10180 FS,ICM10190 FS","ICM10180,ICM10190",225,257,227,261,52,60,52,60,82,,"CCGT D1_Integrated Programme Schedule;CIVILS;CONSTRUCTION;Cooling Water System;Intake Box Culvert Modification (a.k.a. SCW Pump Sump A&A / Diversion Chamber)",0,2,0.0,0.0008138352,0.0,11,0.0,0.0000812387,0.0,0.0061538462,0.0,0.0020887728,0.0,0.0246636771,0.0,0.0
1.4.2.12.13-38,ICM10180,"Intake Culvert Modif - Reinstate the seawall and rock armour to 0.5m below the shoring",7112,"CCGTD1_IPS",TT_Task,"58716",-,-,-,100,TK_Complete,09/01/2020,11/12/2019,11/01/2020,13/12/2019,"ICM10170 FS","ICM10170","ICM10200 FS","ICM10200",232,264,232,265,54,61,54,61,88,,"CCGT D1_Integrated Programme Schedule;CIVILS;CONSTRUCTION;Cooling Water System;Intake Box Culvert Modification (a.k.a. SCW Pump Sump A&A / Diversion Chamber)",1,1,0.0000000828,0.0004069176,0.0002034588,2,1.0,0.0001042911,0.0068493151,0.0030769231,0.000125,0.0010443864,0.0006435006,0.0044843049,1.0,0.0094456524
1.4.2.12.13-39,ICM10190,"Intake Culvert Modif - Remove twin batten waling frame",7112,"CCGTD1_IPS",TT_Task,"58716",-,-,-,100,TK_Complete,09/01/2020,16/11/2019,13/01/2020,20/11/2019,"ICM10170 FS","ICM10170","","",232,261,232,261,54,60,54,61,88,,"CCGT D1_Integrated Programme Schedule;CIVILS;CONSTRUCTION;Cooling Water System;Intake Box Culvert Modification (a.k.a. SCW Pump Sump A&A / Diversion Chamber)",1,0,0.0,0.0,0.0002034588,4,1.0,0.0001273434,0.0068493151,0.0,0.0,0.0,0.0006435006,0.0089686099,1.0,0.0188913048
1.4.2.12.13-40,ICM10200,"Intake Culvert Modif - Backfill and reinstate the crest wall and fence",7112,"CCGTD1_IPS",TT_Task,"58716",-,-,-,100,TK_Complete,16/01/2020,16/01/2020,22/01/2020,22/01/2020,"ICM10180 FS,ICM10250 SS","ICM10180,ICM10250","SW1.1 FF","SW1.1",233,269,234,270,54,62,54,63,88,,"CCGT D1_Integrated Programme Schedule;CIVILS;CONSTRUCTION;Cooling Water System;Intake Box Culvert Modification (a.k.a. SCW Pump Sump A&A / Diversion Chamber)",2,1,0.0000000828,0.0002034588,0.0006103764,6,1.0,0.0002391689,0.0136986301,0.0030769231,0.000125,0.0005221932,0.0019305019,0.0134529148,1.0,0.0647115753
1.4.2.12.13-41,ICM10210,"Intake Culvert Modif - Install temporary penstock at the connection with Diversion Culvert",7112,"CCGTD1_IPS",TT_Task,"58716",-,-,-,100,TK_Complete,24/11/2019,16/10/2019,26/11/2019,20/10/2019,"","","ICM10220 FF","ICM10220",225,256,225,257,52,59,52,60,82,,"CCGT D1_Integrated Programme Schedule;CIVILS;CONSTRUCTION;Cooling Water System;Intake Box Culvert Modification (a.k.a. SCW Pump Sump A&A / Diversion Chamber)",0,1,0.0,0.0008138352,0.0,2,0.8,0.0000812387,0.0,0.0030769231,0.0,0.0020887728,0.0,0.0044843049,0.8,0.0
1.4.2.12.13-42,ICM10220,"Intake Culvert Modif - Observe and repair leaks",7112,"CCGTD1_IPS",TT_Task,"58716",-,-,-,100,TK_Complete,06/01/2020,06/11/2019,09/01/2020,09/11/2019,"ICM10210 FF","ICM10210","IBC10355 FS","IBC10355",231,259,232,260,54,60,54,60,87,,"CCGT D1_Integrated Programme Schedule;CIVILS;CONSTRUCTION;Cooling Water System;Intake Box Culvert Modification (a.k.a. SCW Pump Sump A&A / Diversion Chamber)",1,1,0.0000001242,0.0006103764,0.0002034588,3,1.0,0.0001503957,0.0068493151,0.0030769231,0.0001875,0.0015665796,0.0006435006,0.0067264574,1.0,0.0283369572
1.4.2.12.13-43,ICM10230,"Intake Culvert Modif - Make good interior surface",7112,"CCGTD1_IPS",TT_Task,"58716",-,-,-,100,TK_Complete,24/01/2020,21/10/2019,30/01/2020,15/11/2019,"","","ICM10240 FS","ICM10240",234,257,235,261,54,60,54,60,88,,"CCGT D1_Integrated Programme Schedule;CIVILS;CONSTRUCTION;Cooling Water System;Intake Box Culvert Modification (a.k.a. SCW Pump Sump A&A / Diversion Chamber)",0,1,0.0,0.0004069176,0.0,6,0.0,0.0000812387,0.0,0.0030769231,0.0,0.0010443864,0.0,0.0134529148,0.0,0.0
1.4.2.12.13-44,ICM10240,"Intake Culvert Modif - Remove temporary penstock",7112,"CCGTD1_IPS",TT_Task,"58716",-,-,-,100,TK_Complete,15/02/2020,19/12/2019,16/02/2020,20/12/2019,"ICM10230 FS","ICM10230","CW1.2 FF","CW1.2",237,265,237,266,55,62,55,62,89,,"CCGT D1_Integrated Programme Schedule;CIVILS;CONSTRUCTION;Cooling Water System;Intake Box Culvert Modification (a.k.a. SCW Pump Sump A&A / Diversion Chamber)",1,1,0.0000000414,0.0002034588,0.0002034588,1,1.0,0.0001503957,0.0068493151,0.0030769231,0.0000625,0.0005221932,0.0006435006,0.0022421525,1.0,0.0283369572
1.4.2.12.13-45,ICM10250,"Intake Culvert Modif - Reinstate existing utilities and gantry crane",7112,"CCGTD1_IPS",TT_Task,"58716",-,-,-,100,TK_Complete,09/01/2020,16/12/2019,22/01/2020,28/02/2020,"","","SW1.1 FF,ICM10200 SS","SW1.1,ICM10200",232,265,234,276,54,61,54,64,88,,"CCGT D1_Integrated Programme Schedule;CIVILS;CONSTRUCTION;Cooling Water System;Intake Box Culvert Modification (a.k.a. SCW Pump Sump A&A / Diversion Chamber)",0,2,0.0,0.0004069176,0.0,13,0.0,0.0000812387,0.0,0.0061538462,0.0,0.0010443864,0.0,0.0291479821,0.0,0.0
1.4.2.12.13-46,ICM00025,"Intake Culvert Modif - Install socket H-pile (All except RP14-16)",7112,"CCGTD1_IPS",TT_Task,"58716",-,-,-,100,TK_Complete,27/08/2018,09/08/2018,13/10/2018,10/11/2018,"ICM00020 FS,SCWtaBA8 FS,EV009010 FS","ICM00020,SCWtaBA8,EV009010","ICM00030 FS,ICM00032 FS,ICM10045 FS","ICM00030,ICM00032,ICM10045",160,194,167,208,37,45,39,48,35,,"CCGT D1_Integrated Programme Schedule;CIVILS;CONSTRUCTION;Cooling Water System;Intake Box Culvert Modification (a.k.a. SCW Pump Sump A&A / Diversion Chamber)",3,3,0.0000060657,0.0036622584,0.0022380468,47,0.0,0.000415479,0.0205479452,0.0092307692,0.00915625,0.0093994778,0.0070785071,0.1053811659,0.0,0.1369543013
1.4.2.12.13-47,EV001010,"Event 001 - SCW Penstock Repair 10~16 Sep 2017",7112,"CCGTD1_IPS",TT_Task,"58716",-,-,-,100,TK_Complete,10/09/2017,10/09/2017,16/09/2017,16/09/2017,"","","ICM00010 FS","ICM00010",110,147,111,148,25,34,26,34,11,,"CCGT D1_Integrated Programme Schedule;CIVILS;CONSTRUCTION;Cooling Water System;Intake Box Culvert Modification (a.k.a. SCW Pump Sump A&A / Diversion Chamber)",0,1,0.0,0.0126144456,0.0,6,1.0,0.0000812387,0.0,0.0030769231,0.0,0.0323759791,0.0,0.0134529148,1.0,0.0
1.4.2.12.13-48,EV009002,"Event 009 - 2 nos Pre-drill abortive",7112,"CCGTD1_IPS",TT_Task,"58716",-,-,-,100,TK_Complete,03/03/2018,30/12/2017,31/03/2018,26/01/2018,"","","EV009004 FS","EV009004",135,163,139,167,31,38,32,38,21,,"CCGT D1_Integrated Programme Schedule;CIVILS;CONSTRUCTION;Cooling Water System;Intake Box Culvert Modification (a.k.a. SCW Pump Sump A&A / Diversion Chamber)",0,0,0.0,0.0,0.0,28,1.0,0.0000812387,0.0,0.0,0.0,0.0,0.0,0.0627802691,1.0,0.0
1.4.2.12.13-49,ICM00022,"Intake Culvert Modif - Remove tie beams of existing gantry foundations",7112,"CCGTD1_IPS",TT_Task,"58716",-,-,-,100,TK_Complete,01/04/2019,18/03/2019,09/04/2019,23/03/2019,"ICM00010 FS","ICM00010","ICM00040 FF","ICM00040",191,226,192,227,44,52,45,53,51,,"CCGT D1_Integrated Programme Schedule;CIVILS;CONSTRUCTION;Cooling Water System;Intake Box Culvert Modification (a.k.a. SCW Pump Sump A&A / Diversion Chamber)",1,1,0.0000034572,0.0028484232,0.0018311292,8,1.0,0.0001313413,0.0068493151,0.0030769231,0.00521875,0.007310705,0.0057915058,0.0179372197,1.0,0.0205294469
1.4.2.12.13-50,ICM00032,"Intake Culvert Modif - CS3 Pipe Pile Wall",7112,"CCGTD1_IPS",TT_Task,"58716",-,-,-,100,TK_Complete,26/01/2019,08/01/2019,31/01/2019,12/01/2019,"ICM00025 FS","ICM00025","ICM00033 FS","ICM00033",182,216,183,217,42,50,42,50,44,,"CCGT D1_Integrated Programme Schedule;CIVILS;CONSTRUCTION;Cooling Water System;Intake Box Culvert Modification (a.k.a. SCW Pump Sump A&A / Diversion Chamber)",1,1,0.0000004968,0.0002034588,0.0024415056,5,1.0,0.0001196971,0.0068493151,0.0030769231,0.00075,0.0005221932,0.0077220077,0.0112107623,1.0,0.0157582522
1.4.2.12.13-51,ICM00036,"Intake Culvert Modif - Zone 1 excavation to +2.425 mPD",7112,"CCGTD1_IPS",TT_Task,"58716",-,-,-,100,TK_Complete,03/04/2019,28/02/2019,09/04/2019,29/03/2019,"ICM00035 FF","ICM00035","ICM00040 FF","ICM00040",192,223,192,228,44,52,45,53,52,,"CCGT D1_Integrated Programme Schedule;CIVILS;CONSTRUCTION;Cooling Water System;Intake Box Culvert Modification (a.k.a. SCW Pump Sump A&A / Diversion Chamber)",1,1,0.0000015733,0.0028484232,0.004069176,6,0.0,0.0003635652,0.0068493151,0.0030769231,0.002375,0.007310705,0.0128700129,0.0134529148,0.0,0.1156827201
1.4.2.12.13-52,ICM00035,"Intake Culvert Modif - BA8 consent for excavation below +3.5 and above +2.425 mPD (Zone 1 for Tie Back )(AD TBC)",7112,"CCGTD1_IPS",TT_Task,"58716",-,-,-,100,TK_Complete,03/04/2019,31/01/2019,30/04/2019,29/03/2019,"EV026020 FS,ICM10020 FS,EV017510 FS","EV026020,ICM10020,EV017510","ICM00036 FF","ICM00036",192,219,195,228,44,51,45,53,52,,"CCGT D1_Integrated Programme Schedule;CIVILS;CONSTRUCTION;Cooling Water System;Intake Box Culvert Modification (a.k.a. SCW Pump Sump A&A / Diversion Chamber)",3,1,0.0000017804,0.003051882,0.0038657172,27,0.0,0.0003315205,0.0205479452,0.0030769231,0.0026875,0.0078328982,0.0122265122,0.0605381166,0.0,0.1025524828
1.4.2.12.13-53,ICM00033,"Intake Culvert Modif - Grout Curtain (behind CS3)",7112,"CCGTD1_IPS",TT_Task,"58716",-,-,-,100,TK_Complete,01/04/2019,09/02/2019,12/04/2019,18/02/2019,"ICM00032 FS","ICM00032","","",191,221,193,222,44,51,45,51,51,,"CCGT D1_Integrated Programme Schedule;CIVILS;CONSTRUCTION;Cooling Water System;Intake Box Culvert Modification (a.k.a. SCW Pump Sump A&A / Diversion Chamber)",1,0,0.0,0.0,0.0026449644,11,1.0,0.0001831667,0.0068493151,0.0,0.0,0.0,0.0083655084,0.0246636771,1.0,0.0417647967
1.4.2.12.13-54,ICM10029,"Intake Culvert Modif - BA8 consent for excavation below +3.5 and above +2.425 mPD (Zone 2 for Intake Chamber)(AD TBC)",7112,"CCGTD1_IPS",TT_Task,"58716",-,-,-,100,TK_Complete,31/03/2019,28/02/2019,27/04/2019,29/03/2019,"ICM10020 FS,EV017510 FS","ICM10020,EV017510","ICM10030 FS,ICM10045 FF","ICM10030,ICM10045",191,223,195,228,44,52,45,53,49,,"CCGT D1_Integrated Programme Schedule;CIVILS;CONSTRUCTION;Cooling Water System;Intake Box Culvert Modification (a.k.a. SCW Pump Sump A&A / Diversion Chamber)",2,2,0.0000053825,0.0028484232,0.0038657172,27,0.6,0.0002675178,0.0136986301,0.0061538462,0.008125,0.007310705,0.0122265122,0.0605381166,0.6,0.0763275128
1.4.2.12.13-55,EV009020,"Event 009 - Additional Pre-drill (remaining 2 nos.)",7112,"CCGTD1_IPS",TT_Task,"58716",-,-,-,100,TK_Complete,29/06/2018,29/05/2018,16/07/2018,23/06/2018,"EV009015 FS","EV009015","","",152,184,154,188,35,43,36,43,31,,"CCGT D1_Integrated Programme Schedule;CIVILS;CONSTRUCTION;Cooling Water System;Intake Box Culvert Modification (a.k.a. SCW Pump Sump A&A / Diversion Chamber)",1,0,0.0,0.0,0.0024415056,17,0.2,0.0002003204,0.0068493151,0.0,0.0,0.0,0.0077220077,0.0381165919,0.2,0.0487935056
1.4.2.12.13-56,EV009015,"Event 009 - 3rd pre-drill encountered unchartered UU and rigs demob to help out inclinometer and SPT at Shaft F",7112,"CCGTD1_IPS",TT_Task,"58716",-,-,-,100,TK_Complete,26/05/2018,05/05/2018,11/06/2018,28/05/2018,"EV009010 FS","EV009010","EV009020 FS","EV009020",147,181,149,184,34,42,34,43,28,,"CCGT D1_Integrated Programme Schedule;CIVILS;CONSTRUCTION;Cooling Water System;Intake Box Culvert Modification (a.k.a. SCW Pump Sump A&A / Diversion Chamber)",1,1,0.0000004554,0.0002034588,0.0022380468,16,0.2,0.0001398485,0.0068493151,0.0030769231,0.0006875,0.0005221932,0.0070785071,0.0358744395,0.2,0.024015249
1.4.2.12.13-57,ICM10045,"Intake Culvert Modif - BA8 consent for excavation below +2.425 mPD (AD TBC)",7112,"CCGTD1_IPS",TT_Task,"58716",-,-,-,100,TK_Complete,31/03/2019,28/02/2019,27/04/2019,29/03/2019,"ICM00030 FS,ICM00025 FS,ICM10029 FF","ICM00030,ICM00025,ICM10029","ICM10050 FS","ICM10050",191,223,195,228,44,52,45,53,49,,"CCGT D1_Integrated Programme Schedule;CIVILS;CONSTRUCTION;Cooling Water System;Intake Box Culvert Modification (a.k.a. SCW Pump Sump A&A / Diversion Chamber)",3,1,0.0000097506,0.0022380468,0.006103764,27,0.6,0.0005824901,0.0205479452,0.0030769231,0.01471875,0.0057441253,0.0193050193,0.0605381166,0.6,0.2053867983
1.4.2.13,58714,"Geotechnical Instrumentation",7112,"CCGTD1_IPS",WBS,"58711",,,,100,Complete,28/06/2017,26/06/2017,25/09/2017,11/02/2018,,,,,100,136,112,169,23,31,26,39,,,"CCGT D1_Integrated Programme Schedule;CIVILS;CONSTRUCTION"
1.4.2.13-1,GEOT0010,"Site Establishment - Install Instrumentation to Monitor Building Settlment, Ground/Utility Settlement and Vibrations",7112,"CCGTD1_IPS",TT_Task,"58714",-,-,-,100,TK_Complete,28/06/2017,26/06/2017,25/09/2017,11/02/2018,"COMM FS,ESTAB030 FF","COMM,ESTAB030","SFA10020 FS","SFA10020",100,136,112,169,23,31,26,39,8,,"CCGT D1_Integrated Programme Schedule;CIVILS;CONSTRUCTION;Geotechnical Instrumentation",2,1,0.0000004347,0.0014242116,0.0006103764,89,0.0,0.0001594477,0.0136986301,0.0030769231,0.00065625,0.0036553525,0.0019305019,0.1995515695,0.0,0.0320459714
1.4.2.14,58713,"Site Clearance and Establishment Works",7112,"CCGTD1_IPS",WBS,"58711",,,,100,Complete,03/07/2017,01/06/2017,16/10/2017,23/10/2017,,,,,100,132,115,153,23,31,27,35,,,"CCGT D1_Integrated Programme Schedule;CIVILS;CONSTRUCTION"
1.4.2.14-1,ESTAB040,"Site Establishment - Site Mobilisation Works",7112,"CCGTD1_IPS",TT_Task,"58713",-,-,-,100,TK_Complete,04/07/2017,19/06/2017,05/08/2017,16/10/2017,"COMM FS","COMM","A4130 FS","A4130",100,135,105,152,23,31,24,35,9,,"CCGT D1_Integrated Programme Schedule;CIVILS;CONSTRUCTION;Site Clearance and Establishment Works",1,1,0.0000000828,0.0002034588,0.0004069176,32,0.0,0.0000837309,0.0068493151,0.0030769231,0.000125,0.0005221932,0.0012870013,0.0717488789,0.0,0.0010211516
1.4.2.14-2,ESTAB010,"Site Establishment - Erect Hoarding",7112,"CCGTD1_IPS",TT_Task,"58713",-,-,-,100,TK_Complete,25/09/2017,25/09/2017,16/10/2017,16/10/2017,"COMM FS","COMM","DPT10010 FS","DPT10010",112,149,115,152,26,34,27,35,11,,"CCGT D1_Integrated Programme Schedule;CIVILS;CONSTRUCTION;Site Clearance and Establishment Works",1,1,0.0000002588,0.0103763988,0.0004069176,21,1.0,0.0000828742,0.0068493151,0.0030769231,0.000390625,0.0266318538,0.0012870013,0.0470852018,1.0,0.0006701307
1.4.2.14-3,ESTAB020,"Site Establishment - Site Clearance (incl. Fencing, Wheel Washing Facilities and Hard Standings for Area 2c, 4a, 4b & 5)",7112,"CCGTD1_IPS",TT_Task,"58713",-,-,-,100,TK_Complete,17/07/2017,17/07/2017,18/08/2017,08/09/2017,"COMM FS","COMM","","",102,139,107,147,23,32,25,34,9,,"CCGT D1_Integrated Programme Schedule;CIVILS;CONSTRUCTION;Site Clearance and Establishment Works",1,0,0.0,0.0,0.0004069176,32,0.0,0.0000837309,0.0068493151,0.0,0.0,0.0,0.0012870013,0.0717488789,0.0,0.0010211516
1.4.2.14-4,ESTAB030,"Site Establishment - Conduct Survey to Existing Structures and Structural Survey to Cooling Water Outfall Structure",7112,"CCGTD1_IPS",TT_Task,"58713",-,-,-,100,TK_Complete,03/07/2017,01/06/2017,04/08/2017,23/10/2017,"COMM FS","COMM","GEOT0010 FF","GEOT0010",100,132,105,153,23,31,24,35,9,,"CCGT D1_Integrated Programme Schedule;CIVILS;CONSTRUCTION;Site Clearance and Establishment Works",1,1,0.0,0.0016276704,0.0004069176,32,0.0,0.0000837309,0.0068493151,0.0030769231,0.0,0.0041775457,0.0012870013,0.0717488789,0.0,0.0010211516
1.4.2.15,58712,"Site Accommodations (RO Site Office omitted from scopes)",7112,"CCGTD1_IPS",WBS,"58711",,,,,NotStart,,,,,,,,,,,,,,,,,,,"CCGT D1_Integrated Programme Schedule;CIVILS;CONSTRUCTION"
1.4.3,58706,"PROCUREMENT, MANUFACTURING, DELIVERIES",7112,"CCGTD1_IPS",WBS,"58235",,,,100,Complete,03/07/2017,29/05/2017,01/09/2019,01/10/2019,,,,,100,132,213,254,23,30,49,59,,,"CCGT D1_Integrated Programme Schedule;CIVILS"
1.4.3.1,58710,"Items Supplied by Others (Envisaged Delivery Dates)",7112,"CCGTD1_IPS",WBS,"58706",,,,100,Complete,30/07/2017,18/07/2017,06/04/2018,30/04/2018,,,,,104,139,140,180,24,32,32,42,,,"CCGT D1_Integrated Programme Schedule;CIVILS;PROCUREMENT, MANUFACTURING, DELIVERIES"
1.4.3.1-1,CLPSUP05,"OFCI Item No.1 - Cast-in Embedded Items for Turbine Hall and Turbine Table (AD TBC)",7112,"CCGTD1_IPS",TT_FinMile,"58710",-,-,-,100,TK_Complete,30/07/2017,18/07/2017,30/07/2017,18/07/2017,"","","THTT1200 FS,THGF0060 FS,THTT2100 FS,THTT1100 FS,THTT2200 FS,THTT3100 FS,THTT3200 FS,THTT4040 FS,THTT4200 FS,THTT5100 FS,THTT5130 FS,THGF1060 FS,THGF2060 FS,THGF3060 FS,THGF4060 FS,THGF5060 FS,THGF6060 FS,THGF7060 FS,THGF8060 FS,THGF9060 FS","THTT1200,THGF0060,THTT2100,THTT1100,THTT2200,THTT3100,THTT3200,THTT4040,THTT4200,THTT5100,THTT5130,THGF1060,THGF2060,THGF3060,THGF4060,THGF5060,THGF6060,THGF7060,THGF8060,THGF9060",104,139,104,139,24,32,24,32,9,,"CCGT D1_Integrated Programme Schedule;CIVILS;PROCUREMENT, MANUFACTURING, DELIVERIES;Items Supplied by Others (Envisaged Delivery Dates)",0,20,0.0,0.0551373347,0.0,0,1.0,0.0000812387,0.0,0.0615384615,0.0,0.1415143603,0.0,0.0,1.0,0.0
1.4.3.1-2,CLPSUP10,"OFCI Item No.2 - Cast-in Embedded Items for  HRSG and Stack (AD TBC)",7112,"CCGTD1_IPS",TT_FinMile,"58710",-,-,-,100,TK_Complete,25/09/2017,29/08/2017,25/09/2017,29/08/2017,"","","HRSG0050 FS,HRSG0070 FS,STCK0050 FS","HRSG0050,HRSG0070,STCK0050",112,145,112,145,26,33,26,33,11,,"CCGT D1_Integrated Programme Schedule;CIVILS;PROCUREMENT, MANUFACTURING, DELIVERIES;Items Supplied by Others (Envisaged Delivery Dates)",0,3,0.0,0.0022380468,0.0,0,1.0,0.0000812387,0.0,0.0092307692,0.0,0.0057441253,0.0,0.0,1.0,0.0
1.4.3.1-3,CLPSUP15,"OFCI Item No.3 - Cast-in Embedded Items for Remaining Plant (AD TBC)",7112,"CCGTD1_IPS",TT_FinMile,"58710",-,-,-,100,TK_Complete,26/02/2018,01/02/2018,26/02/2018,01/02/2018,"","","PR010010 FS,APTX0010 FS,GFFE0010 FS,CCWS0010 FS,ODPT0010 FS,FTP10010 FS,FTP20010 FS,FTP30010 FS","PR010010,APTX0010,GFFE0010,CCWS0010,ODPT0010,FTP10010,FTP20010,FTP30010",134,167,134,167,31,39,31,39,19,,"CCGT D1_Integrated Programme Schedule;CIVILS;PROCUREMENT, MANUFACTURING, DELIVERIES;Items Supplied by Others (Envisaged Delivery Dates)",0,8,0.0,0.0042726348,0.0,0,1.0,0.0000812387,0.0,0.0246153846,0.0,0.0109660574,0.0,0.0,1.0,0.0
1.4.3.1-4,CLPSUP45,"OFCI Item No.9 - Crane Walkway (actual dates TBC)",7112,"CCGTD1_IPS",TT_FinMile,"58710",-,-,-,100,TK_Complete,17/12/2017,17/12/2017,17/12/2017,17/12/2017,"","","PLAT0060 FS","PLAT0060",124,161,124,161,29,37,29,37,16,,"CCGT D1_Integrated Programme Schedule;CIVILS;PROCUREMENT, MANUFACTURING, DELIVERIES;Items Supplied by Others (Envisaged Delivery Dates)",0,1,0.0,0.0002034588,0.0,0,1.0,0.0000812387,0.0,0.0030769231,0.0,0.0005221932,0.0,0.0,1.0,0.0
1.4.3.1-5,CLPSUP20,"OFCI Item No.4 - Overhead Cranes (AD TBC)",7112,"CCGTD1_IPS",TT_FinMile,"58710",-,-,-,100,TK_Complete,26/02/2018,04/01/2018,26/02/2018,04/01/2018,"","","OHCN0010 FS,OHCN0005 FS","OHCN0010,OHCN0005",134,163,134,163,31,38,31,38,19,,"CCGT D1_Integrated Programme Schedule;CIVILS;PROCUREMENT, MANUFACTURING, DELIVERIES;Items Supplied by Others (Envisaged Delivery Dates)",0,2,0.0,0.0004069176,0.0,0,1.0,0.0000812387,0.0,0.0061538462,0.0,0.0010443864,0.0,0.0,1.0,0.0
1.4.3.1-6,CLPSUP50,"OFCI Item No.,10 - Platforms (actual dates TBC)",7112,"CCGTD1_IPS",TT_Task,"58710",-,-,-,100,TK_Complete,03/11/2017,03/11/2017,06/04/2018,30/04/2018,"","","","",118,155,140,180,27,36,32,42,14,,"CCGT D1_Integrated Programme Schedule;CIVILS;PROCUREMENT, MANUFACTURING, DELIVERIES;Items Supplied by Others (Envisaged Delivery Dates)",0,0,0.0,0.0,0.0,154,0.0,0.0000812387,0.0,0.0,0.0,0.0,0.0,0.3452914798,0.0,0.0
1.4.3.2,58709,"Materials (for Early and Critical Items)",7112,"CCGTD1_IPS",WBS,"58706",,,,100,Complete,03/07/2017,03/07/2017,01/09/2019,01/10/2019,,,,,100,137,213,254,23,32,49,59,,,"CCGT D1_Integrated Programme Schedule;CIVILS;PROCUREMENT, MANUFACTURING, DELIVERIES"
1.4.3.2-1,PROMA080,"Fabrication and Delivery of Temporary Bulkhead",7112,"CCGTD1_IPS",TT_Task,"58709",-,-,-,100,TK_Complete,14/03/2018,19/01/2018,17/04/2018,12/02/2018,"OAMtSA10 FF,OAMtDN10 FS","OAMtSA10,OAMtDN10","CNY_2018 FS","CNY_2018",137,166,141,169,31,38,33,39,22,,"CCGT D1_Integrated Programme Schedule;CIVILS;PROCUREMENT, MANUFACTURING, DELIVERIES;Materials (for Early and Critical Items)",2,1,0.0000017804,0.0018311292,0.001017294,34,1.0,0.000233975,0.0136986301,0.0030769231,0.0026875,0.0046997389,0.0032175032,0.0762331839,1.0,0.0625834039
1.4.3.2-2,PROMA009,"Manufacturing and Delivery of CWP materials (1st Batch) (Zone B prioritized)",7112,"CCGTD1_IPS",TT_Task,"58709",-,-,-,100,TK_Complete,26/02/2018,22/12/2017,20/05/2018,27/04/2018,"","","PROMA011 FS,PROMA010 FS,GENSUB30 SS","PROMA011,PROMA010,GENSUB30",134,162,146,180,31,37,34,42,19,,"CCGT D1_Integrated Programme Schedule;CIVILS;PROCUREMENT, MANUFACTURING, DELIVERIES;Materials (for Early and Critical Items)",0,3,0.0,0.0146490336,0.0,83,0.0,0.0000812387,0.0,0.0092307692,0.0,0.0375979112,0.0,0.1860986547,0.0,0.0
1.4.3.2-3,PROMA020,"Manufacturing and Delivery of Structural Steels (Early Delivery)",7112,"CCGTD1_IPS",TT_Task,"58709",-,-,-,100,TK_Complete,06/11/2017,24/11/2017,10/12/2017,08/12/2017,"GENSUB11 FF,GENSUB10 FS","GENSUB11,GENSUB10","THSS1010 FS,PROMA025 FS","THSS1010,PROMA025",118,158,123,160,27,36,28,37,14,,"CCGT D1_Integrated Programme Schedule;CIVILS;PROCUREMENT, MANUFACTURING, DELIVERIES;Materials (for Early and Critical Items)",2,2,0.0000174586,0.0179043744,0.001017294,34,1.0,0.0002842932,0.0136986301,0.0061538462,0.0263541667,0.0459530026,0.0032175032,0.0762331839,1.0,0.083201182
1.4.3.2-4,PROMA030,"Manufacturing and Delivery Roof /Wall Cladding (1st Batch)",7112,"CCGTD1_IPS",TT_Task,"58709",-,-,-,100,TK_Complete,26/02/2018,18/01/2018,15/04/2018,21/03/2018,"THCL2BA5a FS,PROSC040 FS","THCL2BA5a,PROSC040","PROMA040 SS,THRF0510 FS","PROMA040,THRF0510",134,165,141,174,31,38,33,40,19,,"CCGT D1_Integrated Programme Schedule;CIVILS;PROCUREMENT, MANUFACTURING, DELIVERIES;Materials (for Early and Critical Items)",2,2,0.0000013249,0.0018311292,0.0008138352,48,0.0,0.0001773452,0.0136986301,0.0061538462,0.002,0.0046997389,0.0025740026,0.1076233184,0.0,0.0393794294
1.4.3.2-5,PROMA040,"Manufacturing and Delivery of Curtain Wall /Glazing (1st Batch)",7112,"CCGTD1_IPS",TT_Task,"58709",-,-,-,100,TK_Complete,26/11/2018,09/11/2018,23/02/2019,10/01/2019,"PROMA030 SS,GENSUB82 FS,GENSUB88 FS","PROMA030,GENSUB82,GENSUB88","","",173,208,186,216,40,48,43,50,39,,"CCGT D1_Integrated Programme Schedule;CIVILS;PROCUREMENT, MANUFACTURING, DELIVERIES;Materials (for Early and Critical Items)",3,0,0.0,0.0,0.002034588,89,1.0,0.0004147581,0.0205479452,0.0,0.0,0.0,0.0064350064,0.1995515695,1.0,0.136658927
1.4.3.2-6,PROMA011,"Manufacturing and Delivery of CWP materials (2nd Batch)",7112,"CCGTD1_IPS",TT_Task,"58709",-,-,-,100,TK_Complete,26/05/2018,28/04/2018,09/07/2018,27/05/2018,"PROMA009 FS,GENSUB31 FS","PROMA009,GENSUB31","PROMA012 FS","PROMA012",147,180,153,184,34,42,35,43,28,,"CCGT D1_Integrated Programme Schedule;CIVILS;PROCUREMENT, MANUFACTURING, DELIVERIES;Materials (for Early and Critical Items)",2,1,0.0000081566,0.0134282808,0.0006103764,44,1.0,0.0002728784,0.0136986301,0.0030769231,0.0123125,0.034464752,0.0019305019,0.0986547085,1.0,0.0785239976
1.4.3.2-7,PROMA012,"Manufacturing and Delivery of CWP materials (3rd Batch)",7112,"CCGTD1_IPS",TT_Task,"58709",-,-,-,100,TK_Complete,28/06/2018,28/05/2018,25/09/2018,16/12/2018,"PROMA011 FS","PROMA011","PROMA013 FS,SFF20020 FS,PROMA014 FS","PROMA013,SFF20020,PROMA014",152,184,164,213,35,43,38,49,31,,"CCGT D1_Integrated Programme Schedule;CIVILS;PROCUREMENT, MANUFACTURING, DELIVERIES;Materials (for Early and Critical Items)",1,3,0.0000107236,0.013224822,0.0008138352,89,0.0,0.0003135522,0.0068493151,0.0092307692,0.0161875,0.0339425587,0.0025740026,0.1995515695,0.0,0.0951900273
1.4.3.2-8,PROMA013,"Manufacturing and Delivery of CWP materials (4th Batch)",7112,"CCGTD1_IPS",TT_Task,"58709",-,-,-,100,TK_Complete,26/01/2019,17/12/2018,25/04/2019,25/05/2019,"PROMA012 FS","PROMA012","SFE10278 FS,SFA20020 FS,SFF30262 FS,SFE30045 FS","SFE10278,SFA20020,SFF30262,SFE30045",182,213,195,236,42,49,45,55,44,,"CCGT D1_Integrated Programme Schedule;CIVILS;PROCUREMENT, MANUFACTURING, DELIVERIES;Materials (for Early and Critical Items)",1,4,0.0000117587,0.0115971516,0.001017294,89,0.0,0.000305464,0.0068493151,0.0123076923,0.01775,0.0297650131,0.0032175032,0.1995515695,0.0,0.0918758795
1.4.3.2-9,PROMA050,"Fabrication and Delivery of Precast Concrete Intake Chamber",7112,"CCGTD1_IPS",TT_Task,"58709",-,-,-,100,TK_Complete,01/05/2019,26/03/2019,23/07/2019,01/10/2019,"GENSUB37 FS,SCWp1BA8 FS,SCWp2BA8 FS","GENSUB37,SCWp1BA8,SCWp2BA8","ICM10100 FS","ICM10100",196,227,207,254,45,53,48,59,56,,"CCGT D1_Integrated Programme Schedule;CIVILS;PROCUREMENT, MANUFACTURING, DELIVERIES;Materials (for Early and Critical Items)",3,1,0.0000004968,0.0012207528,0.0024415056,83,0.0,0.0005811869,0.0205479452,0.0030769231,0.00075,0.0031331593,0.0077220077,0.1860986547,0.0,0.204852822
1.4.3.2-10,PROMA010,"CWP Installation start on site (1st Batch) (Zone A)",7112,"CCGTD1_IPS",TT_Mile,"58709",-,-,-,100,TK_Complete,26/11/2018,03/11/2018,26/11/2018,03/11/2018,"PROMA009 FS","PROMA009","DPT10120 FS","DPT10120",173,207,173,207,40,48,40,48,39,,"CCGT D1_Integrated Programme Schedule;CIVILS;PROCUREMENT, MANUFACTURING, DELIVERIES;Materials (for Early and Critical Items)",1,1,0.0000001242,0.0006103764,0.0002034588,0,1.0,0.0000812387,0.0068493151,0.0030769231,0.0001875,0.0015665796,0.0006435006,0.0,1.0,0.0
1.4.3.2-11,PROMA014,"CWP Pipe Jacking start on site (using 3rd Batch Pipe Mtl)",7112,"CCGTD1_IPS",TT_Mile,"58709",-,-,-,100,TK_Complete,01/09/2019,09/07/2019,01/09/2019,09/07/2019,"PROMA012 FS,SFF20010 FS","PROMA012,SFF20010","SFF20020 FS","SFF20020",213,242,213,242,49,56,49,56,74,,"CCGT D1_Integrated Programme Schedule;CIVILS;PROCUREMENT, MANUFACTURING, DELIVERIES;Materials (for Early and Critical Items)",2,1,0.0000210539,0.0124109868,0.0052899288,0,1.0,0.0000812387,0.0136986301,0.0030769231,0.03178125,0.0318537859,0.0167310167,0.0,1.0,0.0
1.4.3.2-12,PROMA025,"Manufacturing and Delivery of Structural Steels (1st Batch)",7112,"CCGTD1_IPS",TT_Task,"58709",-,-,-,100,TK_Complete,06/03/2018,24/11/2017,06/03/2018,27/03/2018,"PROMA020 FS","PROMA020","THSS0010 FS","THSS0010",135,158,135,175,31,36,31,40,22,,"CCGT D1_Integrated Programme Schedule;CIVILS;PROCUREMENT, MANUFACTURING, DELIVERIES;Materials (for Early and Critical Items)",1,1,0.0000057965,0.0056968464,0.0012207528,0,0.0,0.0000812387,0.0068493151,0.0030769231,0.00875,0.0146214099,0.0038610039,0.0,0.0,0.0
1.4.3.2-13,PROMA060,"Procurement and Delivery of Conductor Materials for Earth Mat",7112,"CCGTD1_IPS",TT_Task,"58709",-,-,-,100,TK_Complete,03/07/2017,03/07/2017,11/08/2017,08/09/2017,"","","THTT0020 FS","THTT0020",100,137,106,147,23,32,24,34,8,,"CCGT D1_Integrated Programme Schedule;CIVILS;PROCUREMENT, MANUFACTURING, DELIVERIES;Materials (for Early and Critical Items)",0,1,0.0,0.0425228891,0.0,39,0.0,0.0000812387,0.0,0.0030769231,0.0,0.1091383812,0.0,0.0874439462,0.0,0.0
1.4.3.3,58708,"Plant and Equipment (Major Items)",7112,"CCGTD1_IPS",WBS,"58706",,,,100,Complete,16/06/2018,07/05/2018,25/01/2019,22/09/2019,,,,,150,181,182,253,35,42,42,59,,,"CCGT D1_Integrated Programme Schedule;CIVILS;PROCUREMENT, MANUFACTURING, DELIVERIES"
1.4.3.3-1,PROPE010,"Sourcing, Reconditioning and Delivery of TBM (AD TBC)",7112,"CCGTD1_IPS",TT_Task,"58708",-,-,-,100,TK_Complete,16/06/2018,07/05/2018,05/10/2018,26/08/2018,"PROSC050 FS","PROSC050","PROPE015 FS","PROPE015",150,181,166,197,35,42,38,46,30,,"CCGT D1_Integrated Programme Schedule;CIVILS;PROCUREMENT, MANUFACTURING, DELIVERIES;Plant and Equipment (Major Items)",1,1,0.0000001242,0.0002034588,0.0006103764,111,1.0,0.0001640443,0.0068493151,0.0030769231,0.0001875,0.0005221932,0.0019305019,0.2488789238,1.0,0.0339294261
1.4.3.3-2,PROPE020,"Fabrication and Delivery of Lifts (AS / EF TBC)",7112,"CCGTD1_IPS",TT_Task,"58708",-,-,-,100,TK_Complete,11/08/2018,12/07/2018,25/01/2019,22/09/2019,"GENSUB26 FS","GENSUB26","LIFT1030 FS","LIFT1030",158,190,182,253,36,44,42,59,34,,"CCGT D1_Integrated Programme Schedule;CIVILS;PROCUREMENT, MANUFACTURING, DELIVERIES;Plant and Equipment (Major Items)",1,1,0.0000014905,0.0008138352,0.0018311292,167,0.0,0.0003584796,0.0068493151,0.0030769231,0.00225,0.0020887728,0.0057915058,0.3744394619,0.0,0.1135989217
1.4.3.3-3,PROPE015,"TBM On Site (early date) (AD TBC)",7112,"CCGTD1_IPS",TT_Mile,"58708",-,-,-,100,TK_Complete,26/11/2018,26/08/2018,26/11/2018,26/08/2018,"PROPE010 FS","PROPE010","","",173,197,173,197,40,46,40,46,39,,"CCGT D1_Integrated Programme Schedule;CIVILS;PROCUREMENT, MANUFACTURING, DELIVERIES;Plant and Equipment (Major Items)",1,0,0.0,0.0,0.0008138352,0,1.0,0.0000812387,0.0068493151,0.0,0.0,0.0,0.0025740026,0.0,1.0,0.0
1.4.3.4,58707,"Works Packages (for Early and Critical Packages)",7112,"CCGTD1_IPS",WBS,"58706",,,,100,Complete,03/07/2017,29/05/2017,14/04/2018,01/06/2018,,,,,100,132,141,185,23,30,33,43,,,"CCGT D1_Integrated Programme Schedule;CIVILS;PROCUREMENT, MANUFACTURING, DELIVERIES"
1.4.3.4-1,EV005010,"Event 005 - New Requirements on Lift No.1",7112,"CCGTD1_IPS",TT_Task,"58707",-,-,-,100,TK_Complete,27/11/2017,16/11/2017,26/12/2017,20/12/2017,"PROSC070 FS","PROSC070","EV005020 FF","EV005020",121,156,125,161,28,36,29,37,15,,"CCGT D1_Integrated Programme Schedule;CIVILS;PROCUREMENT, MANUFACTURING, DELIVERIES;Works Packages (for Early and Critical Packages)",1,1,0.0000001242,0.002034588,0.0006103764,29,0.8,0.0001217323,0.0068493151,0.0030769231,0.0001875,0.0052219321,0.0019305019,0.0650224215,0.8,0.0165921835
1.4.3.4-2,EV005020,"Event 005 - Award Lift Subcontract",7112,"CCGTD1_IPS",TT_FinMile,"58707",-,-,-,100,TK_Complete,15/12/2017,20/12/2017,15/12/2017,20/12/2017,"EV005010 FF","EV005010","LIFTDN10 FS","LIFTDN10",124,161,124,161,29,37,29,37,16,,"CCGT D1_Integrated Programme Schedule;CIVILS;PROCUREMENT, MANUFACTURING, DELIVERIES;Works Packages (for Early and Critical Packages)",1,1,0.0000003726,0.0018311292,0.0008138352,0,1.0,0.0000812387,0.0068493151,0.0030769231,0.0005625,0.0046997389,0.0025740026,0.0,1.0,0.0
1.4.3.4-3,PROSC051,"Procurement of Subcontract - CWP Installation (Laying in trench)",7112,"CCGTD1_IPS",TT_Task,"58707",-,-,-,100,TK_Complete,27/11/2017,29/05/2017,09/02/2018,04/04/2018,"","","DPT10120 FS,DPT30120 FS","DPT10120,DPT30120",121,132,132,176,28,30,30,41,15,,"CCGT D1_Integrated Programme Schedule;CIVILS;PROCUREMENT, MANUFACTURING, DELIVERIES;Works Packages (for Early and Critical Packages)",0,2,0.0,0.003051882,0.0,74,0.0,0.0000812387,0.0,0.0061538462,0.0,0.0078328982,0.0,0.1659192825,0.0,0.0
1.4.3.4-4,PROSC020,"Procurement of Subcontract - Grouting & Sheet /Pipe Piling",7112,"CCGTD1_IPS",TT_Task,"58707",-,-,-,100,TK_Complete,03/07/2017,29/05/2017,31/08/2017,26/08/2017,"_LOI FS,COMM FS","_LOI,COMM","SFF10010 FS,SFF10020 FS,DPT10010 FS,SFA10020 FS","SFF10010,SFF10020,DPT10010,SFA10020",100,132,109,145,23,30,25,33,8,,"CCGT D1_Integrated Programme Schedule;CIVILS;PROCUREMENT, MANUFACTURING, DELIVERIES;Works Packages (for Early and Critical Packages)",2,4,0.0000077115,0.0329603255,0.0004069176,59,0.0,0.0000940269,0.0136986301,0.0123076923,0.011640625,0.0845953003,0.0012870013,0.1322869955,0.0,0.005239938
1.4.3.4-5,PROSC010,"Procurement of Subcontract - Excavation & ELS (and other civil works)",7112,"CCGTD1_IPS",TT_Task,"58707",-,-,-,100,TK_Complete,03/07/2017,29/05/2017,31/08/2017,22/12/2017,"_LOI FS,COMM FS","_LOI,COMM","SFF10050 FS","SFF10050",100,132,109,162,23,30,25,37,8,,"CCGT D1_Integrated Programme Schedule;CIVILS;PROCUREMENT, MANUFACTURING, DELIVERIES;Works Packages (for Early and Critical Packages)",2,1,0.0000004968,0.0012207528,0.0004069176,59,0.0,0.0000940269,0.0136986301,0.0030769231,0.00075,0.0031331593,0.0012870013,0.1322869955,0.0,0.005239938
1.4.3.4-6,PROSC030,"Procurement of Subcontract - Steel Structure & Heavy Lifting",7112,"CCGTD1_IPS",TT_Task,"58707",-,-,-,100,TK_Complete,03/07/2017,29/05/2017,15/09/2017,24/10/2017,"_LOI FS,COMM FS","_LOI,COMM","GENSUB10 FS","GENSUB10",100,132,111,153,23,30,25,35,8,,"CCGT D1_Integrated Programme Schedule;CIVILS;PROCUREMENT, MANUFACTURING, DELIVERIES;Works Packages (for Early and Critical Packages)",2,1,0.0000067764,0.0185147508,0.0004069176,74,0.0,0.0000972781,0.0136986301,0.0030769231,0.0102291667,0.0475195822,0.0012870013,0.1659192825,0.0,0.0065721256
1.4.3.4-7,PROSC040,"Procurement of Subcontract - Standing Seam Roof, Aluminium Cladding & Curtain Wall",7112,"CCGTD1_IPS",TT_Task,"58707",-,-,-,100,TK_Complete,03/07/2017,29/05/2017,15/09/2017,20/12/2017,"_LOI FS,COMM FS","_LOI,COMM","MCGZDN10 FF,PROMA030 FS","MCGZDN10,PROMA030",100,132,111,161,23,30,25,37,8,,"CCGT D1_Integrated Programme Schedule;CIVILS;PROCUREMENT, MANUFACTURING, DELIVERIES;Works Packages (for Early and Critical Packages)",2,2,0.0000013249,0.0034587996,0.0004069176,74,0.0,0.0000972781,0.0136986301,0.0061538462,0.002,0.0088772846,0.0012870013,0.1659192825,0.0,0.0065721256
1.4.3.4-8,PROSC050,"Procurement of Subcontract - CWP Installation (Jacking / TBM)",7112,"CCGTD1_IPS",TT_Task,"58707",-,-,-,100,TK_Complete,03/07/2017,29/05/2017,15/09/2017,19/04/2018,"_LOI FS,COMM FS","_LOI,COMM","PROPE010 FS","PROPE010",100,132,111,178,23,30,25,41,8,,"CCGT D1_Integrated Programme Schedule;CIVILS;PROCUREMENT, MANUFACTURING, DELIVERIES;Works Packages (for Early and Critical Packages)",2,1,0.0000001656,0.0004069176,0.0004069176,74,0.0,0.0000972781,0.0136986301,0.0030769231,0.00025,0.0010443864,0.0012870013,0.1659192825,0.0,0.0065721256
1.4.3.4-9,PROSC060,"Procurement of Subcontract - Building Service Installation (i.e., Elect, ACMV, FS, P&D)",7112,"CCGTD1_IPS",TT_Task,"58707",-,-,-,100,TK_Complete,04/09/2017,04/09/2017,27/10/2017,20/02/2018,"_LOI FS,COMM FS","_LOI,COMM","IRRIDN10 FS,THEL0012 FS","IRRIDN10,THEL0012",109,146,117,170,25,34,27,39,11,,"CCGT D1_Integrated Programme Schedule;CIVILS;PROCUREMENT, MANUFACTURING, DELIVERIES;Works Packages (for Early and Critical Packages)",2,2,0.0000002484,0.0018311292,0.0004069176,53,0.0,0.0000927264,0.0136986301,0.0061538462,0.000375,0.0046997389,0.0012870013,0.1188340807,0.0,0.0047070629
1.4.3.4-10,PROSC070,"Procurement of Subcontract - Lift Installation (once awarded to Otis)",7112,"CCGTD1_IPS",TT_Task,"58707",-,-,-,100,TK_Complete,07/08/2017,07/08/2017,25/09/2017,17/10/2017,"_LOI FS,COMM FS","_LOI,COMM","LIFTDN10 FS,EV005010 FS","LIFTDN10,EV005010",105,142,112,152,24,33,26,35,10,,"CCGT D1_Integrated Programme Schedule;CIVILS;PROCUREMENT, MANUFACTURING, DELIVERIES;Works Packages (for Early and Critical Packages)",2,2,0.0000009109,0.0022380468,0.0004069176,49,0.0,0.0000918594,0.0136986301,0.0061538462,0.001375,0.0057441253,0.0012870013,0.1098654709,0.0,0.0043518129
1.4.3.4-11,PROSC080,"Procurement of Subcontract - Supply of Precast Concrete Structure (i.e. Diversion Culvert)",7112,"CCGTD1_IPS",TT_Task,"58707",-,-,-,100,TK_Complete,26/02/2018,05/02/2018,14/04/2018,01/06/2018,"_LOI FS,COMM FS","_LOI,COMM","GENSUB36 FS,GENSUB35 FS","GENSUB36,GENSUB35",134,168,141,185,31,39,33,43,19,,"CCGT D1_Integrated Programme Schedule;CIVILS;PROCUREMENT, MANUFACTURING, DELIVERIES;Works Packages (for Early and Critical Packages)",2,2,0.0000007729,0.0022380468,0.0004069176,47,0.0,0.0000914259,0.0136986301,0.0061538462,0.0011666667,0.0057441253,0.0012870013,0.1053811659,0.0,0.0041741879
1.4.4,58696,"DESIGN & ENGINEERING",7112,"CCGTD1_IPS",WBS,"58235",,,,100,Complete,23/05/2017,23/05/2017,18/04/2019,18/01/2019,,,,,94,131,194,218,22,30,45,50,,,"CCGT D1_Integrated Programme Schedule;CIVILS"
1.4.4.1,58702,"Permanent Works (Contractor's Design)",7112,"CCGTD1_IPS",WBS,"58696",,,,100,Complete,16/10/2017,16/10/2017,18/04/2019,18/01/2019,,,,,115,152,194,218,27,35,45,50,,,"CCGT D1_Integrated Programme Schedule;CIVILS;DESIGN & ENGINEERING"
1.4.4.1.1,58705,"Lifts",7112,"CCGTD1_IPS",WBS,"58702",,,,100,Complete,21/12/2017,21/12/2017,03/08/2018,04/07/2018,,,,,125,161,157,189,29,37,36,44,,,"CCGT D1_Integrated Programme Schedule;CIVILS;DESIGN & ENGINEERING;Permanent Works (Contractor's Design)"
1.4.4.1.1-1,LIFTDN10,"Lifts - Review engineer's drawings and prepare design (AD TBC)",7112,"CCGTD1_IPS",TT_Task,"58705",-,-,-,100,TK_Complete,21/12/2017,21/12/2017,17/01/2018,13/06/2018,"PROSC070 FS,EV005020 FS","PROSC070,EV005020","GENSUB25 FS","GENSUB25",125,161,129,186,29,37,30,43,16,,"CCGT D1_Integrated Programme Schedule;CIVILS;DESIGN & ENGINEERING;Permanent Works (Contractor's Design);Lifts",2,1,0.0000016562,0.0016276704,0.001017294,27,0.0,0.0001880967,0.0136986301,0.0030769231,0.0025,0.0041775457,0.0032175032,0.0605381166,0.0,0.0437848522
1.4.4.1.1-2,LIFTDN20,"Lifts - Address engineer's comment and prepare resubmission (AD TBC)",7112,"CCGTD1_IPS",TT_Task,"58705",-,-,-,100,TK_Complete,28/07/2018,28/06/2018,03/08/2018,04/07/2018,"GENSUB25 FS","GENSUB25","GENSUB26 FS","GENSUB26",156,188,157,189,36,44,36,44,33,,"CCGT D1_Integrated Programme Schedule;CIVILS;DESIGN & ENGINEERING;Permanent Works (Contractor's Design);Lifts",1,1,0.000001739,0.0012207528,0.0014242116,6,1.0,0.0002867157,0.0068493151,0.0030769231,0.002625,0.0031331593,0.0045045045,0.0134529148,1.0,0.0841938178
1.4.4.1.2,58704,"Irrigation System",7112,"CCGTD1_IPS",WBS,"58702",,,,100,Complete,08/02/2019,21/02/2018,18/04/2019,18/01/2019,,,,,184,170,194,218,43,39,45,50,,,"CCGT D1_Integrated Programme Schedule;CIVILS;DESIGN & ENGINEERING;Permanent Works (Contractor's Design)"
1.4.4.1.2-1,IRRIDN10,"Irrigation System - Review engineer's drawings and prepare design",7112,"CCGTD1_IPS",TT_Task,"58704",-,-,-,100,TK_Complete,08/02/2019,21/02/2018,07/03/2019,21/09/2018,"COMM FS,PROSC060 FS","COMM,PROSC060","GENSUB20 FF","GENSUB20",184,170,188,201,43,39,43,46,47,,"CCGT D1_Integrated Programme Schedule;CIVILS;DESIGN & ENGINEERING;Permanent Works (Contractor's Design);Irrigation System",2,1,0.0000007453,0.0014242116,0.0006103764,27,0.0,0.0001307009,0.0136986301,0.0030769231,0.001125,0.0036553525,0.0019305019,0.0605381166,0.0,0.0202670211
1.4.4.1.2-2,IRRIDN20,"Irrigation System - Address engineer's comment and prepare resubmission",7112,"CCGTD1_IPS",TT_Task,"58704",-,-,-,100,TK_Complete,05/04/2019,14/06/2018,18/04/2019,18/01/2019,"GENSUB20 FF","GENSUB20","GENSUB21 FF","GENSUB21",192,186,194,218,44,43,45,50,52,,"CCGT D1_Integrated Programme Schedule;CIVILS;DESIGN & ENGINEERING;Permanent Works (Contractor's Design);Irrigation System",1,1,0.0000009109,0.001017294,0.001017294,13,0.0,0.0002451095,0.0068493151,0.0030769231,0.001375,0.0026109661,0.0032175032,0.0291479821,0.0,0.0671457552
1.4.4.1.3,58703,"Curtain Wall & Glazing",7112,"CCGTD1_IPS",WBS,"58702",,,,100,Complete,16/10/2017,16/10/2017,05/09/2018,20/08/2018,,,,,115,152,162,196,27,35,37,45,,,"CCGT D1_Integrated Programme Schedule;CIVILS;DESIGN & ENGINEERING;Permanent Works (Contractor's Design)"
1.4.4.1.3-1,MCGZDN60,"Roof Cladding - Address engineer's comment and prepare resubmission",7112,"CCGTD1_IPS",TT_Task,"58703",-,-,-,100,TK_Complete,23/04/2018,24/03/2018,20/05/2018,13/04/2018,"GENSUB80 FS","GENSUB80","GENSUB82 FS","GENSUB82",142,175,146,178,33,40,34,41,25,,"CCGT D1_Integrated Programme Schedule;CIVILS;DESIGN & ENGINEERING;Permanent Works (Contractor's Design);Curtain Wall & Glazing",1,1,0.0000003312,0.0008138352,0.0004069176,27,1.0,0.000209244,0.0068493151,0.0030769231,0.0005,0.0020887728,0.0012870013,0.0605381166,1.0,0.0524499399
1.4.4.1.3-2,MCGZDN10,"Roof Cladding - Review engineer's drawings and prepare design",7112,"CCGTD1_IPS",TT_Task,"58703",-,-,-,100,TK_Complete,16/10/2017,16/10/2017,12/11/2017,26/01/2018,"PROSC040 FF","PROSC040","GENSUB15 FS","GENSUB15",115,152,119,167,27,35,27,38,12,,"CCGT D1_Integrated Programme Schedule;CIVILS;DESIGN & ENGINEERING;Permanent Works (Contractor's Design);Curtain Wall & Glazing",1,1,0.0000006625,0.0028484232,0.0006103764,27,0.0,0.0001110487,0.0068493151,0.0030769231,0.001,0.007310705,0.0019305019,0.0605381166,0.0,0.0122145934
1.4.4.1.3-3,MCGZDN20,"Roof Cladding - ICE Check and Issue Cert",7112,"CCGTD1_IPS",TT_Task,"58703",-,-,-,100,TK_Complete,26/07/2018,10/07/2018,08/08/2018,23/07/2018,"","","MCGZDN30 FS","MCGZDN30",156,190,158,192,36,44,36,44,33,,"CCGT D1_Integrated Programme Schedule;CIVILS;DESIGN & ENGINEERING;Permanent Works (Contractor's Design);Curtain Wall & Glazing",0,1,0.0,0.0002034588,0.0,13,1.0,0.0000812387,0.0,0.0030769231,0.0,0.0005221932,0.0,0.0291479821,1.0,0.0
1.4.4.1.3-4,MCGZDN30,"Roof Cladding - Performance mock-up test (by approved laboratory)",7112,"CCGTD1_IPS",TT_Task,"58703",-,-,-,100,TK_Complete,09/08/2018,24/07/2018,05/09/2018,20/08/2018,"GENSUB15 FS,MCGZDN20 FS","GENSUB15,MCGZDN20","","",158,192,162,196,36,44,37,45,34,,"CCGT D1_Integrated Programme Schedule;CIVILS;DESIGN & ENGINEERING;Permanent Works (Contractor's Design);Curtain Wall & Glazing",2,0,0.0,0.0,0.0012207528,27,1.0,0.0002513912,0.0136986301,0.0,0.0,0.0,0.0038610039,0.0605381166,1.0,0.0697196421
1.4.4.1.3-5,MCGZDN40,"Roof Cladding - Address engineer's comment and prepare resubmission",7112,"CCGTD1_IPS",TT_Task,"58703",-,-,-,100,TK_Complete,12/03/2018,06/02/2018,25/03/2018,09/02/2018,"GENSUB15 FS","GENSUB15","GENSUB16 FS","GENSUB16",136,168,138,169,31,39,32,39,22,,"CCGT D1_Integrated Programme Schedule;CIVILS;DESIGN & ENGINEERING;Permanent Works (Contractor's Design);Curtain Wall & Glazing",1,1,0.0000012007,0.0022380468,0.001017294,13,1.0,0.0001298661,0.0068493151,0.0030769231,0.0018125,0.0057441253,0.0032175032,0.0291479821,1.0,0.0199249964
1.4.4.1.3-6,MCGZDN50,"Roof Cladding - Review engineer's drawings and prepare design",7112,"CCGTD1_IPS",TT_Task,"58703",-,-,-,100,TK_Complete,23/04/2018,27/01/2018,20/05/2018,23/02/2018,"","","GENSUB80 FS","GENSUB80",142,167,146,171,33,39,34,39,25,,"CCGT D1_Integrated Programme Schedule;CIVILS;DESIGN & ENGINEERING;Permanent Works (Contractor's Design);Curtain Wall & Glazing",0,1,0.0,0.0012207528,0.0,27,1.0,0.0000812387,0.0,0.0030769231,0.0,0.0031331593,0.0,0.0605381166,1.0,0.0
1.4.4.2,58697,"Temporary Works (Contractor's Design)",7112,"CCGTD1_IPS",WBS,"58696",,,,100,Complete,23/05/2017,23/05/2017,09/10/2017,06/01/2018,,,,,94,131,114,164,22,30,26,38,,,"CCGT D1_Integrated Programme Schedule;CIVILS;DESIGN & ENGINEERING"
1.4.4.2-1,TWORK010XX,"Temporary Works designed by Contractor - Batch 1 ready for submission",7112,"CCGTD1_IPS",TT_FinMile,"58697",-,-,-,100,TK_Complete,11/06/2017,11/06/2017,11/06/2017,11/06/2017,"COMM SS","COMM","SFFtDN20 FS,POWtDN10 FS,SFFtDN30 FS","SFFtDN20,POWtDN10,SFFtDN30",97,134,97,134,22,31,22,31,7,,"CCGT D1_Integrated Programme Schedule;CIVILS;DESIGN & ENGINEERING;Temporary Works (Contractor's Design)",1,3,0.0000068178,0.0555442523,0.0004069176,0,1.0,0.0000812387,0.0068493151,0.0092307692,0.0102916667,0.1425587467,0.0012870013,0.0,1.0,0.0
1.4.4.2-2,TWORK020XX,"Temporary Works designed by Contractor - Batch 2 ready for submission",7112,"CCGTD1_IPS",TT_FinMile,"58697",-,-,-,100,TK_Complete,27/06/2017,27/06/2017,27/06/2017,27/06/2017,"COMM FS","COMM","OAMtDN10 FF,SFAtDN10 FF,SFAtDN19 FS,SFEtDN09 FS","OAMtDN10,SFAtDN10,SFAtDN19,SFEtDN09",99,136,99,136,23,31,23,31,8,,"CCGT D1_Integrated Programme Schedule;CIVILS;DESIGN & ENGINEERING;Temporary Works (Contractor's Design)",1,4,0.0000042025,0.0343845371,0.0004069176,0,1.0,0.0000812387,0.0068493151,0.0123076923,0.00634375,0.0882506527,0.0012870013,0.0,1.0,0.0
1.4.4.2.1,58701,"Power Island Area",7112,"CCGTD1_IPS",WBS,"58697",,,,100,Complete,27/05/2017,27/05/2017,09/06/2017,09/06/2017,,,,,95,132,97,134,22,30,22,31,,,"CCGT D1_Integrated Programme Schedule;CIVILS;DESIGN & ENGINEERING;Temporary Works (Contractor's Design)"
1.4.4.2.1-1,POWtDN10,"Review and design temporary works for Power Island Area (Open Cut) {7c2i}",7112,"CCGTD1_IPS",TT_Task,"58701",-,-,-,100,TK_Complete,27/05/2017,27/05/2017,09/06/2017,09/06/2017,"TWORK010XX FS","TWORK010XX","POWtSA10 FS","POWtSA10",95,132,97,134,22,30,22,31,5,,"CCGT D1_Integrated Programme Schedule;CIVILS;DESIGN & ENGINEERING;Temporary Works (Contractor's Design);Power Island Area",1,1,0.0000147053,0.0433367243,0.0006103764,13,1.0,0.0001042911,0.0068493151,0.0030769231,0.0221979167,0.111227154,0.0019305019,0.0291479821,1.0,0.0094456524
1.4.4.2.2,58700,"Outfall Modification (incl' Works Outside Lot Boundary)",7112,"CCGTD1_IPS",WBS,"58697",,,,100,Complete,29/05/2017,12/07/2017,27/06/2017,06/01/2018,,,,,95,138,99,164,22,32,23,38,,,"CCGT D1_Integrated Programme Schedule;CIVILS;DESIGN & ENGINEERING;Temporary Works (Contractor's Design)"
1.4.4.2.2-1,OAMtDN10,"Review and design a temporary bulkhead for Outfall Apron Modification",7112,"CCGTD1_IPS",TT_Task,"58700",-,-,-,100,TK_Complete,29/05/2017,12/07/2017,27/06/2017,06/01/2018,"TWORK020XX FF","TWORK020XX","OAMtSA10 FF,PROMA080 FS","OAMtSA10,PROMA080",95,138,99,164,22,32,23,38,6,,"CCGT D1_Integrated Programme Schedule;CIVILS;DESIGN & ENGINEERING;Temporary Works (Contractor's Design);Outfall Modification (incl' Works Outside Lot Boundary)",1,2,0.0000012835,0.0022380468,0.0006103764,29,0.0,0.0001051144,0.0068493151,0.0061538462,0.0019375,0.0057441253,0.0019305019,0.0650224215,0.0,0.0097829971
1.4.4.2.3,58699,"Supplementary Cooling Water (SCW) Pump Sump A&A",7112,"CCGTD1_IPS",WBS,"58697",,,,100,Complete,07/08/2017,28/07/2017,09/10/2017,16/08/2017,,,,,105,141,114,143,24,32,26,33,,,"CCGT D1_Integrated Programme Schedule;CIVILS;DESIGN & ENGINEERING;Temporary Works (Contractor's Design)"
1.4.4.2.3-1,ICMtDN10,"Review and design temporary works for SCW and Intake Culvert Modification (Wall Only) {5b1-alt}",7112,"CCGTD1_IPS",TT_Task,"58699",-,-,-,100,TK_Complete,11/08/2017,28/07/2017,09/09/2017,16/08/2017,"ICMtDN09 FS","ICMtDN09","SCWtSA10 FS,ICMtDN20 FF,SCWtSA09 FS","SCWtSA10,ICMtDN20,SCWtSA09",106,141,110,143,24,32,25,33,10,,"CCGT D1_Integrated Programme Schedule;CIVILS;DESIGN & ENGINEERING;Temporary Works (Contractor's Design);Supplementary Cooling Water (SCW) Pump Sump A&A",1,3,0.0000002898,0.0014242116,0.0002034588,29,1.0,0.0001503957,0.0068493151,0.0092307692,0.0004375,0.0036553525,0.0006435006,0.0650224215,1.0,0.0283369572
1.4.4.2.3-2,ICMtDN20,"Review and design temporary works for SCW and Intake Culvert Modification (Excavation & ELS) {5b1-alt}",7112,"CCGTD1_IPS",TT_Task,"58699",-,-,-,100,TK_Complete,10/09/2017,28/07/2017,09/10/2017,16/08/2017,"ICMtDN10 FF","ICMtDN10","SCWtSA20 FS,SCWtSA19 FS","SCWtSA20,SCWtSA19",110,141,114,143,25,32,26,33,11,,"CCGT D1_Integrated Programme Schedule;CIVILS;DESIGN & ENGINEERING;Temporary Works (Contractor's Design);Supplementary Cooling Water (SCW) Pump Sump A&A",1,2,0.0000002484,0.0006103764,0.0004069176,29,1.0,0.0001487324,0.0068493151,0.0061538462,0.000375,0.0015665796,0.0012870013,0.0650224215,1.0,0.0276554229
1.4.4.2.3-3,ICMtDN09,"Review and design temporary works for SCW and Intake Culvert Modification (Wall Only) - for MS-05 {5b1(r)}",7112,"CCGTD1_IPS",TT_Task,"58699",-,-,-,100,TK_Complete,07/08/2017,28/07/2017,20/08/2017,10/08/2017,"","","ICMtDN10 FS","ICMtDN10",105,141,107,142,24,32,25,33,10,,"CCGT D1_Integrated Programme Schedule;CIVILS;DESIGN & ENGINEERING;Temporary Works (Contractor's Design);Supplementary Cooling Water (SCW) Pump Sump A&A",0,1,0.0,0.0016276704,0.0,13,1.0,0.0000812387,0.0,0.0030769231,0.0,0.0041775457,0.0,0.0291479821,1.0,0.0
1.4.4.2.3-4,ICMtDN19,"Review and design temporary works for SCW and Intake Culvert Modification (Excavation & ELS) - for MS-05 {5b1(r)}",7112,"CCGTD1_IPS",TT_Task,"58699",-,-,-,100,TK_Complete,07/08/2017,28/07/2017,20/08/2017,10/08/2017,"","","","",105,141,107,142,24,32,25,33,10,,"CCGT D1_Integrated Programme Schedule;CIVILS;DESIGN & ENGINEERING;Temporary Works (Contractor's Design);Supplementary Cooling Water (SCW) Pump Sump A&A",0,0,0.0,0.0,0.0,13,1.0,0.0000812387,0.0,0.0,0.0,0.0,0.0,0.0291479821,1.0,0.0
1.4.4.2.4,58698,"Cooling Water System",7112,"CCGTD1_IPS",WBS,"58697",,,,100,Complete,23/05/2017,23/05/2017,04/10/2017,04/09/2017,,,,,94,131,114,146,22,30,26,34,,,"CCGT D1_Integrated Programme Schedule;CIVILS;DESIGN & ENGINEERING;Temporary Works (Contractor's Design)"
1.4.4.2.4-1,SFAtDN10,"Review and design temporary works for Shaft A, Pump Station, Diversion Culvert (Wall Only) {4b4-2}",7112,"CCGTD1_IPS",TT_Task,"58698",-,-,-,100,TK_Complete,04/06/2017,04/06/2017,03/07/2017,03/07/2017,"TWORK020XX FF","TWORK020XX","SFAtSA10 FS","SFAtSA10",96,133,100,137,22,31,23,32,6,,"CCGT D1_Integrated Programme Schedule;CIVILS;DESIGN & ENGINEERING;Temporary Works (Contractor's Design);Cooling Water System",1,1,0.0000032709,0.0146490336,0.0006103764,29,1.0,0.0001051144,0.0068493151,0.0030769231,0.0049375,0.0375979112,0.0019305019,0.0650224215,1.0,0.0097829971
1.4.4.2.4-2,SFAtDN20,"Review and design temporary works for Shaft A, Pump Station, Diversion Culvert (Excavation & ELS) {4b5}",7112,"CCGTD1_IPS",TT_Task,"58698",-,-,-,100,TK_Complete,07/07/2017,07/07/2017,04/09/2017,04/09/2017,"","","SFAtSA21 FS","SFAtSA21",101,138,109,146,23,32,25,34,9,,"CCGT D1_Integrated Programme Schedule;CIVILS;DESIGN & ENGINEERING;Temporary Works (Contractor's Design);Cooling Water System",0,1,0.0,0.0288911495,0.0,59,1.0,0.0000812387,0.0,0.0030769231,0.0,0.074151436,0.0,0.1322869955,1.0,0.0
1.4.4.2.4-3,SFDtDN10,"Review and design temporary works for Shaft D (Wall, Excav. & ELS) {4b3(r1)}",7112,"CCGTD1_IPS",TT_Task,"58698",-,-,-,100,TK_Complete,23/05/2017,23/05/2017,01/06/2017,01/06/2017,"_LOI SS","_LOI","SFDtSA10 FS","SFDtSA10",94,131,96,132,22,30,22,31,5,,"CCGT D1_Integrated Programme Schedule;CIVILS;DESIGN & ENGINEERING;Temporary Works (Contractor's Design);Cooling Water System",1,1,0.0000001035,0.0006103764,0.0002034588,9,1.0,0.0000824885,0.0068493151,0.0030769231,0.00015625,0.0015665796,0.0006435006,0.0201793722,1.0,0.0005121137
1.4.4.2.4-4,SFEtDN10,"Review and design temporary works for Shaft E and Discharge Culvert (Wall, Excav. & ELS) {4b2-1}",7112,"CCGTD1_IPS",TT_Task,"58698",-,-,-,100,TK_Complete,05/09/2017,12/06/2017,04/10/2017,02/07/2017,"SFEtDN09 FS","SFEtDN09","SFEtSA10 FS","SFEtSA10",109,134,114,137,25,31,26,32,11,,"CCGT D1_Integrated Programme Schedule;CIVILS;DESIGN & ENGINEERING;Temporary Works (Contractor's Design);Cooling Water System",1,1,0.0000091296,0.0164801628,0.0008138352,29,1.0,0.0001425812,0.0068493151,0.0030769231,0.01378125,0.0422976501,0.0025740026,0.0650224215,1.0,0.0251349492
1.4.4.2.4-5,SFFtDN20,"Review and design temp works for Shaft F & Double Pipe Trench - Shaft F (Skin Wall) & Southern Section Sheet Pile {4b1i}",7112,"CCGTD1_IPS",TT_Task,"58698",-,-,-,100,TK_Complete,27/05/2017,27/05/2017,09/06/2017,09/06/2017,"TWORK010XX FS","TWORK010XX","SFFtSA10 FS","SFFtSA10",95,132,97,134,22,30,22,31,5,,"CCGT D1_Integrated Programme Schedule;CIVILS;DESIGN & ENGINEERING;Temporary Works (Contractor's Design);Cooling Water System",1,1,0.0000027327,0.0543234995,0.0006103764,13,1.0,0.0001042911,0.0068493151,0.0030769231,0.004125,0.1394255875,0.0019305019,0.0291479821,1.0,0.0094456524
1.4.4.2.4-6,SFFtDN30,"Review and design temp works for Shaft F & Double Pipe Trench - Open Cut {4b1-alt B}",7112,"CCGTD1_IPS",TT_Task,"58698",-,-,-,100,TK_Complete,27/05/2017,27/05/2017,09/06/2017,09/06/2017,"TWORK010XX FS","TWORK010XX","SFFtSA20 FS","SFFtSA20",95,132,97,134,22,30,22,31,5,,"CCGT D1_Integrated Programme Schedule;CIVILS;DESIGN & ENGINEERING;Temporary Works (Contractor's Design);Cooling Water System",1,1,0.0000003105,0.0006103764,0.0006103764,13,1.0,0.0001042911,0.0068493151,0.0030769231,0.00046875,0.0015665796,0.0019305019,0.0291479821,1.0,0.0094456524
1.4.4.2.4-7,SFAtDN19,"Review and design temporary works for Shaft A, Pump Station, Diversion Culvert (Excavation & ELS) - for MS-03 {4b5}",7112,"CCGTD1_IPS",TT_Task,"58698",-,-,-,100,TK_Complete,28/06/2017,28/06/2017,11/07/2017,25/07/2017,"TWORK020XX FS","TWORK020XX","SFAtSA20 FS","SFAtSA20",100,136,101,140,23,31,23,32,8,,"CCGT D1_Integrated Programme Schedule;CIVILS;DESIGN & ENGINEERING;Temporary Works (Contractor's Design);Cooling Water System",1,1,0.0000001242,0.0002034588,0.0006103764,13,0.0,0.0000919416,0.0068493151,0.0030769231,0.0001875,0.0005221932,0.0019305019,0.0291479821,0.0,0.0043854815
1.4.4.2.4-8,SFEtDN09,"Review and design temporary works for Shaft E and Discharge Culvert (Wall, Excav. & ELS) - for MS-03 {4b2-1}",7112,"CCGTD1_IPS",TT_Task,"58698",-,-,-,100,TK_Complete,28/06/2017,12/06/2017,11/07/2017,02/07/2017,"TWORK020XX FS","TWORK020XX","SFEtSA09 FS,SFEtDN10 FS","SFEtSA09,SFEtDN10",100,134,101,137,23,31,23,32,8,,"CCGT D1_Integrated Programme Schedule;CIVILS;DESIGN & ENGINEERING;Temporary Works (Contractor's Design);Cooling Water System",1,2,0.0000060243,0.0168870804,0.0006103764,13,0.4,0.0000919416,0.0068493151,0.0061538462,0.00909375,0.0433420366,0.0019305019,0.0291479821,0.4,0.0043854815
1.4.5,58627,"GENERAL & PRELIMINARIES",7112,"CCGTD1_IPS",WBS,"58235",,,,100,Complete,31/03/2017,11/04/2017,22/02/2020,,,,,,87,125,238,,20,29,55,,,,"CCGT D1_Integrated Programme Schedule;CIVILS"
1.4.5.1,58688,"Submission to RO (Responsible Officer) for Approval",7112,"CCGTD1_IPS",WBS,"58627",,,,100,Complete,29/05/2017,29/05/2017,02/05/2019,,,,,,95,132,196,,22,30,45,,,,"CCGT D1_Integrated Programme Schedule;CIVILS;GENERAL & PRELIMINARIES"
1.4.5.1.1,58695,"Permanent Works Design",7112,"CCGTD1_IPS",WBS,"58688",,,,,NotStart,,,,,,,,,,,,,,,,,,,"CCGT D1_Integrated Programme Schedule;CIVILS;GENERAL & PRELIMINARIES;Submission to RO (Responsible Officer) for Approval"
1.4.5.1.2,58690,"Temporary Works Design",7112,"CCGTD1_IPS",WBS,"58688",,,,100,Complete,02/06/2017,08/06/2017,03/02/2018,12/02/2018,,,,,96,133,131,169,22,31,30,39,,,"CCGT D1_Integrated Programme Schedule;CIVILS;GENERAL & PRELIMINARIES;Submission to RO (Responsible Officer) for Approval"
1.4.5.1.2.1,58694,"Power Island Area",7112,"CCGTD1_IPS",WBS,"58690",,,,100,Complete,10/06/2017,10/06/2017,21/06/2017,21/06/2017,,,,,97,134,99,135,22,31,23,31,,,"CCGT D1_Integrated Programme Schedule;CIVILS;GENERAL & PRELIMINARIES;Submission to RO (Responsible Officer) for Approval;Temporary Works Design"
1.4.5.1.2.1-1,POWtSA10,"Submission and approval of temporary works for Power Island Area (Open Cut) {7c2i}",7112,"CCGTD1_IPS",TT_Task,"58694",-,-,-,100,TK_Complete,10/06/2017,10/06/2017,21/06/2017,21/06/2017,"POWtDN10 FS","POWtDN10","POW_BA58 FF","POW_BA58",97,134,99,135,22,31,23,31,7,,"CCGT D1_Integrated Programme Schedule;CIVILS;GENERAL & PRELIMINARIES;Submission to RO (Responsible Officer) for Approval;Temporary Works Design;Power Island Area",1,1,0.0000233587,0.0431332655,0.0008138352,11,1.0,0.0001700118,0.0068493151,0.0030769231,0.0352604167,0.1107049608,0.0025740026,0.0246636771,1.0,0.0363746181
1.4.5.1.2.2,58693,"Outfall Modification (incl' Works Outside Lot Boundary)",7112,"CCGTD1_IPS",WBS,"58690",,,,100,Complete,07/01/2018,16/11/2017,03/02/2018,10/01/2018,,,,,127,156,131,164,29,36,30,38,,,"CCGT D1_Integrated Programme Schedule;CIVILS;GENERAL & PRELIMINARIES;Submission to RO (Responsible Officer) for Approval;Temporary Works Design"
1.4.5.1.2.2-1,OAMtSA10,"Submission and approval of temporary works for Outfall Apron Modification",7112,"CCGTD1_IPS",TT_Task,"58693",-,-,-,100,TK_Complete,07/01/2018,16/11/2017,03/02/2018,10/01/2018,"OAMtDN10 FF","OAMtDN10","PROMA080 FF","PROMA080",127,156,131,164,29,36,30,38,16,,"CCGT D1_Integrated Programme Schedule;CIVILS;GENERAL & PRELIMINARIES;Submission to RO (Responsible Officer) for Approval;Temporary Works Design;Outfall Modification (incl' Works Outside Lot Boundary)",1,1,0.0,0.002034588,0.0008138352,27,0.0,0.0001208418,0.0068493151,0.0030769231,0.0,0.0052219321,0.0025740026,0.0605381166,0.0,0.0162272998
1.4.5.1.2.3,58692,"Supplementary Cooling Water (SCW) Pump Sump A&A",7112,"CCGTD1_IPS",WBS,"58690",,,,100,Complete,17/08/2017,17/08/2017,30/08/2017,19/12/2017,,,,,107,143,109,161,25,33,25,37,,,"CCGT D1_Integrated Programme Schedule;CIVILS;GENERAL & PRELIMINARIES;Submission to RO (Responsible Officer) for Approval;Temporary Works Design"
1.4.5.1.2.3-1,SCWtSA10,"Submission and approval of temporary works for SCW and Intake Culvert Modification (Wall Only) {5b1-alt}",7112,"CCGTD1_IPS",TT_Task,"58692",-,-,-,100,TK_Complete,17/08/2017,17/08/2017,30/08/2017,19/12/2017,"ICMtDN10 FS","ICMtDN10","SCW-BA58 FS","SCW-BA58",107,143,109,161,25,33,25,37,10,,"CCGT D1_Integrated Programme Schedule;CIVILS;GENERAL & PRELIMINARIES;Submission to RO (Responsible Officer) for Approval;Temporary Works Design;Supplementary Cooling Water (SCW) Pump Sump A&A",1,1,0.0000000828,0.0002034588,0.0004069176,13,0.0,0.0001114945,0.0068493151,0.0030769231,0.000125,0.0005221932,0.0012870013,0.0291479821,0.0,0.0123972585
1.4.5.1.2.3-2,SCWtSA20,"Submission and approval of temporary works for SCW and Intake Culvert Modification (Excav & ELS) {5b1-alt}",7112,"CCGTD1_IPS",TT_Task,"58692",-,-,-,100,TK_Complete,17/08/2017,17/08/2017,30/08/2017,19/12/2017,"ICMtDN20 FS","ICMtDN20","SCW_BA58 FS","SCW_BA58",107,143,109,161,25,33,25,37,10,,"CCGT D1_Integrated Programme Schedule;CIVILS;GENERAL & PRELIMINARIES;Submission to RO (Responsible Officer) for Approval;Temporary Works Design;Supplementary Cooling Water (SCW) Pump Sump A&A",1,1,0.0000001242,0.0002034588,0.0006103764,13,0.0,0.0001445491,0.0068493151,0.0030769231,0.0001875,0.0005221932,0.0019305019,0.0291479821,0.0,0.0259412944
1.4.5.1.2.3-3,SCWtSA09,"Submission and approval of temporary works for SCW and Intake Culvert Modification (Wall Only) - for MS-05 {5b1(r)}",7112,"CCGTD1_IPS",TT_Task,"58692",-,-,-,100,TK_Complete,17/08/2017,17/08/2017,30/08/2017,19/09/2017,"ICMtDN10 FS","ICMtDN10","","",107,143,109,148,25,33,25,34,10,,"CCGT D1_Integrated Programme Schedule;CIVILS;GENERAL & PRELIMINARIES;Submission to RO (Responsible Officer) for Approval;Temporary Works Design;Supplementary Cooling Water (SCW) Pump Sump A&A",1,0,0.0,0.0,0.0004069176,13,0.0,0.0001114945,0.0068493151,0.0,0.0,0.0,0.0012870013,0.0291479821,0.0,0.0123972585
1.4.5.1.2.3-4,SCWtSA19,"Submission and approval of temporary works for SCW and Intake Culvert Modification (Excav & ELS) - for MS-05 {5b1(r)}",7112,"CCGTD1_IPS",TT_Task,"58692",-,-,-,100,TK_Complete,17/08/2017,17/08/2017,30/08/2017,19/09/2017,"ICMtDN20 FS","ICMtDN20","","",107,143,109,148,25,33,25,34,10,,"CCGT D1_Integrated Programme Schedule;CIVILS;GENERAL & PRELIMINARIES;Submission to RO (Responsible Officer) for Approval;Temporary Works Design;Supplementary Cooling Water (SCW) Pump Sump A&A",1,0,0.0,0.0,0.0006103764,13,0.0,0.0001445491,0.0068493151,0.0,0.0,0.0,0.0019305019,0.0291479821,0.0,0.0259412944
1.4.5.1.2.4,58691,"Cooling Water System",7112,"CCGTD1_IPS",WBS,"58690",,,,100,Complete,02/06/2017,08/06/2017,03/11/2017,12/02/2018,,,,,96,133,118,169,22,31,27,39,,,"CCGT D1_Integrated Programme Schedule;CIVILS;GENERAL & PRELIMINARIES;Submission to RO (Responsible Officer) for Approval;Temporary Works Design"
1.4.5.1.2.4-1,SFAtSA10,"Submission and approval of temporary works for Shaft A, Pump Station, Diversion Culvert (Wall Only) {4b4-2}",7112,"CCGTD1_IPS",TT_Task,"58691",-,-,-,100,TK_Complete,04/07/2017,04/07/2017,17/07/2017,20/12/2017,"SFAtDN10 FS","SFAtDN10","SFA-BA58a FS","SFA-BA58a",100,137,102,161,23,32,23,37,9,,"CCGT D1_Integrated Programme Schedule;CIVILS;GENERAL & PRELIMINARIES;Submission to RO (Responsible Officer) for Approval;Temporary Works Design;Cooling Water System",1,1,0.0000060864,0.0144455748,0.0008138352,13,0.0,0.0001707124,0.0068493151,0.0030769231,0.0091875,0.037075718,0.0025740026,0.0291479821,0.0,0.0366616774
1.4.5.1.2.4-2,SFAtSA21,"Submission and approval of temporary works for Shaft A, Pump Station, Diversion Culvert (Excav. & ELS) {4b5}",7112,"CCGTD1_IPS",TT_Task,"58691",-,-,-,100,TK_Complete,05/09/2017,05/09/2017,18/09/2017,12/02/2018,"SFAtDN20 FS","SFAtDN20","SFA_BA58a FS","SFA_BA58a",109,146,111,169,25,34,26,39,11,,"CCGT D1_Integrated Programme Schedule;CIVILS;GENERAL & PRELIMINARIES;Submission to RO (Responsible Officer) for Approval;Temporary Works Design;Cooling Water System",1,1,0.000005838,0.0286876907,0.0002034588,13,0.0,0.0001503957,0.0068493151,0.0030769231,0.0088125,0.0736292428,0.0006435006,0.0291479821,0.0,0.0283369572
1.4.5.1.2.4-3,SFDtSA10,"Submission and approval of temporary works for Shaft D (Wall, Excav. & ELS) {4b3(r1)}",7112,"CCGTD1_IPS",TT_Task,"58691",-,-,-,100,TK_Complete,02/06/2017,08/06/2017,15/06/2017,20/06/2017,"SFDtDN10 FS","SFDtDN10","SFDt1BA5 FF","SFDt1BA5",96,133,98,135,22,31,22,31,6,,"CCGT D1_Integrated Programme Schedule;CIVILS;GENERAL & PRELIMINARIES;Submission to RO (Responsible Officer) for Approval;Temporary Works Design;Cooling Water System",1,1,0.0000001449,0.0004069176,0.0004069176,13,1.0,0.0001514593,0.0068493151,0.0030769231,0.00021875,0.0010443864,0.0012870013,0.0291479821,1.0,0.028772734
1.4.5.1.2.4-4,SFEtSA10,"Submission and approval of temporary works for Shaft E and Discharge Culvert (Wall, Excav. & ELS) {4b2-1}",7112,"CCGTD1_IPS",TT_Task,"58691",-,-,-,100,TK_Complete,05/10/2017,03/07/2017,03/11/2017,20/07/2017,"SFEtDN10 FS","SFEtDN10","SFE-BA58 FS","SFE-BA58",114,137,118,139,26,32,27,32,12,,"CCGT D1_Integrated Programme Schedule;CIVILS;GENERAL & PRELIMINARIES;Submission to RO (Responsible Officer) for Approval;Temporary Works Design;Cooling Water System",1,1,0.0000122763,0.016276704,0.001017294,29,1.0,0.0002026014,0.0068493151,0.0030769231,0.01853125,0.0417754569,0.0032175032,0.0650224215,1.0,0.0497281277
1.4.5.1.2.4-5,SFFtSA10,"Submission and approval of temporary works for Shaft F (Skin Wall) & Double Pipe (Southern Sheet Pile) {4b1i}",7112,"CCGTD1_IPS",TT_Task,"58691",-,-,-,100,TK_Complete,10/06/2017,09/06/2017,21/06/2017,22/06/2017,"SFFtDN20 FS","SFFtDN20","SFF-BA58 FF","SFF-BA58",97,134,99,135,22,31,23,31,7,,"CCGT D1_Integrated Programme Schedule;CIVILS;GENERAL & PRELIMINARIES;Submission to RO (Responsible Officer) for Approval;Temporary Works Design;Cooling Water System",1,1,0.0000136219,0.0541200407,0.0008138352,11,0.8,0.0001700118,0.0068493151,0.0030769231,0.0205625,0.1389033943,0.0025740026,0.0246636771,0.8,0.0363746181
1.4.5.1.2.4-6,SFFtSA20,"Submission and approval of temporary works for Shaft F and Double Pipe Trench (Open Cut) {4b1-alt B}",7112,"CCGTD1_IPS",TT_Task,"58691",-,-,-,100,TK_Complete,10/06/2017,09/06/2017,21/06/2017,22/06/2017,"SFFtDN30 FS","SFFtDN30","SFF_BA58 FS","SFF_BA58",97,134,99,135,22,31,23,31,7,,"CCGT D1_Integrated Programme Schedule;CIVILS;GENERAL & PRELIMINARIES;Submission to RO (Responsible Officer) for Approval;Temporary Works Design;Cooling Water System",1,1,0.0000002691,0.0004069176,0.0008138352,11,0.6,0.0001700118,0.0068493151,0.0030769231,0.00040625,0.0010443864,0.0025740026,0.0246636771,0.6,0.0363746181
1.4.5.1.2.4-7,SFAtSA20,"Submission and approval of temporary works for Shaft A, Pump Station, Diversion Culvert (Excav. & ELS) - for MS-03 {4b5}",7112,"CCGTD1_IPS",TT_Task,"58691",-,-,-,100,TK_Complete,07/08/2017,07/08/2017,15/08/2017,05/12/2017,"SFAtDN19 FS","SFAtDN19","","",105,142,106,159,24,33,24,37,10,,"CCGT D1_Integrated Programme Schedule;CIVILS;GENERAL & PRELIMINARIES;Submission to RO (Responsible Officer) for Approval;Temporary Works Design;Cooling Water System",1,0,0.0,0.0,0.0008138352,8,0.0,0.0001595032,0.0068493151,0.0,0.0,0.0,0.0025740026,0.0179372197,0.0,0.0320687283
1.4.5.1.2.4-8,SFEtSA09,"Submission and approval of temporary works for Shaft E and Discharge Culvert (Wall, Excav. & ELS) - for MS-03 {4b2i-1}",7112,"CCGTD1_IPS",TT_Task,"58691",-,-,-,100,TK_Complete,07/08/2017,03/07/2017,15/08/2017,20/07/2017,"SFEtDN09 FS","SFEtDN09","","",105,137,106,139,24,32,24,32,10,,"CCGT D1_Integrated Programme Schedule;CIVILS;GENERAL & PRELIMINARIES;Submission to RO (Responsible Officer) for Approval;Temporary Works Design;Cooling Water System",1,0,0.0,0.0,0.0008138352,8,0.0,0.0000981608,0.0068493151,0.0,0.0,0.0,0.0025740026,0.0179372197,0.0,0.0069337791
1.4.5.1.2.4-9,SFFtSA10a,"Resubmission and approval of temporary works for Shaft F (Skin Wall) only {4b1-1(r)}",7112,"CCGTD1_IPS",TT_Task,"58691",-,-,-,100,TK_Complete,10/06/2017,18/07/2017,21/06/2017,23/07/2017,"SFF-BA58 FS","SFF-BA58","SFJt1BA5a FS","SFJt1BA5a",97,139,99,140,22,32,23,32,7,,"CCGT D1_Integrated Programme Schedule;CIVILS;GENERAL & PRELIMINARIES;Submission to RO (Responsible Officer) for Approval;Temporary Works Design;Cooling Water System",1,1,0.0000265813,0.0433367243,0.0012207528,11,1.0,0.0001774331,0.0068493151,0.0030769231,0.040125,0.111227154,0.0038610039,0.0246636771,1.0,0.0394154697
1.4.5.1.2.4-10,SFFtSA10b,"Resubmission and approval of Zone A (Southern Sheet Pile) {4b1-alt A-1}",7112,"CCGTD1_IPS",TT_Task,"58691",-,-,-,100,TK_Complete,10/06/2017,19/07/2017,21/06/2017,23/07/2017,"SFF-BA58 FS","SFF-BA58","SFF-BA58b FS","SFF-BA58b",97,139,99,140,22,32,23,32,7,,"CCGT D1_Integrated Programme Schedule;CIVILS;GENERAL & PRELIMINARIES;Submission to RO (Responsible Officer) for Approval;Temporary Works Design;Cooling Water System",1,1,0.0000083222,0.0103763988,0.0012207528,11,1.0,0.0001774331,0.0068493151,0.0030769231,0.0125625,0.0266318538,0.0038610039,0.0246636771,1.0,0.0394154697
1.4.5.1.3,58689,"General Submissions",7112,"CCGTD1_IPS",WBS,"58688",,,,100,Complete,29/05/2017,29/05/2017,02/05/2019,12/02/2019,,,,,95,132,196,221,22,30,45,51,,,"CCGT D1_Integrated Programme Schedule;CIVILS;GENERAL & PRELIMINARIES;Submission to RO (Responsible Officer) for Approval"
1.4.5.1.3-1,GENSUB80,"Wall Cladding Shop Drawing & Calculation - RO Review and Comment",7112,"CCGTD1_IPS",TT_Task,"58689",-,-,-,100,TK_Complete,23/04/2018,24/02/2018,20/05/2018,23/03/2018,"MCGZDN50 FS","MCGZDN50","MCGZDN60 FS","MCGZDN60",142,171,146,175,33,39,34,40,25,,"CCGT D1_Integrated Programme Schedule;CIVILS;GENERAL & PRELIMINARIES;Submission to RO (Responsible Officer) for Approval;General Submissions",1,1,0.000000207,0.001017294,0.0002034588,27,1.0,0.0001503957,0.0068493151,0.0030769231,0.0003125,0.0026109661,0.0006435006,0.0605381166,1.0,0.0283369572
1.4.5.1.3-2,GENSUB82,"Wall Cladding Shop Drawing & Calculation - RO Comment and Approval (= ready for BD submission)",7112,"CCGTD1_IPS",TT_Task,"58689",-,-,-,100,TK_Complete,23/04/2018,14/04/2018,06/05/2018,24/05/2018,"MCGZDN60 FS","MCGZDN60","PROMA040 FS,GENSUB84 FS","PROMA040,GENSUB84",142,178,144,183,33,41,33,42,25,,"CCGT D1_Integrated Programme Schedule;CIVILS;GENERAL & PRELIMINARIES;Submission to RO (Responsible Officer) for Approval;General Submissions",1,2,0.0000003726,0.0006103764,0.0006103764,13,0.0,0.0002593786,0.0068493151,0.0061538462,0.0005625,0.0015665796,0.0019305019,0.0291479821,0.0,0.0729924654
1.4.5.1.3-3,GENSUB84,"Wall Cladding - BD Approval",7112,"CCGTD1_IPS",TT_Task,"58689",-,-,-,100,TK_Complete,26/05/2018,25/05/2018,24/07/2018,23/07/2018,"GENSUB82 FS","GENSUB82","GENSUB86 FS","GENSUB86",147,184,155,192,34,42,36,44,28,,"CCGT D1_Integrated Programme Schedule;CIVILS;GENERAL & PRELIMINARIES;Submission to RO (Responsible Officer) for Approval;General Submissions",1,1,0.0000001656,0.0002034588,0.0008138352,59,1.0,0.0001692949,0.0068493151,0.0030769231,0.00025,0.0005221932,0.0025740026,0.1322869955,1.0,0.0360808471
1.4.5.1.3-4,GENSUB86,"Wall Cladding  - BD Consent",7112,"CCGTD1_IPS",TT_Task,"58689",-,-,-,100,TK_Complete,26/08/2018,24/08/2018,22/09/2018,20/09/2018,"GENSUB84 FS","GENSUB84","","",160,197,164,200,37,45,38,46,35,,"CCGT D1_Integrated Programme Schedule;CIVILS;GENERAL & PRELIMINARIES;Submission to RO (Responsible Officer) for Approval;General Submissions",1,0,0.0,0.0,0.001017294,27,1.0,0.0002254223,0.0068493151,0.0,0.0,0.0,0.0032175032,0.0605381166,1.0,0.0590789536
1.4.5.1.3-5,GENSUB88,"Glazing - BD Approval",7112,"CCGTD1_IPS",TT_Task,"58689",-,-,-,100,TK_Complete,26/06/2018,20/06/2018,24/08/2018,21/08/2018,"","","GENSUB90 FS,PROMA040 FS","GENSUB90,PROMA040",151,187,160,196,35,43,37,45,31,,"CCGT D1_Integrated Programme Schedule;CIVILS;GENERAL & PRELIMINARIES;Submission to RO (Responsible Officer) for Approval;General Submissions",0,2,0.0,0.0004069176,0.0,59,0.6,0.0000812387,0.0,0.0061538462,0.0,0.0010443864,0.0,0.1322869955,0.6,0.0
1.4.5.1.3-6,GENSUB90,"Glazing - BD Consent",7112,"CCGTD1_IPS",TT_Task,"58689",-,-,-,100,TK_Complete,26/11/2018,18/10/2018,23/12/2018,06/11/2018,"GENSUB88 FS","GENSUB88","","",173,204,177,207,40,47,41,48,39,,"CCGT D1_Integrated Programme Schedule;CIVILS;GENERAL & PRELIMINARIES;Submission to RO (Responsible Officer) for Approval;General Submissions",1,0,0.0,0.0,0.0002034588,27,1.0,0.0000973356,0.0068493151,0.0,0.0,0.0,0.0006435006,0.0605381166,1.0,0.0065956711
1.4.5.1.3-7,GENSUB92,"Louvre - BD Approval",7112,"CCGTD1_IPS",TT_Task,"58689",-,-,-,100,TK_Complete,26/11/2018,19/11/2018,24/01/2019,15/01/2019,"","","GENSUB94 FF","GENSUB94",173,209,182,217,40,48,42,50,39,,"CCGT D1_Integrated Programme Schedule;CIVILS;GENERAL & PRELIMINARIES;Submission to RO (Responsible Officer) for Approval;General Submissions",0,1,0.0,0.0002034588,0.0,59,1.0,0.0000812387,0.0,0.0030769231,0.0,0.0005221932,0.0,0.1322869955,1.0,0.0
1.4.5.1.3-8,GENSUB94,"Louvre - BD Consent",7112,"CCGTD1_IPS",TT_Task,"58689",-,-,-,100,TK_Complete,26/01/2019,06/12/2018,22/02/2019,18/01/2019,"GENSUB92 FF","GENSUB92","","",182,211,186,218,42,49,43,50,44,,"CCGT D1_Integrated Programme Schedule;CIVILS;GENERAL & PRELIMINARIES;Submission to RO (Responsible Officer) for Approval;General Submissions",1,0,0.0,0.0,0.0002034588,27,0.0,0.0001503957,0.0068493151,0.0,0.0,0.0,0.0006435006,0.0605381166,0.0,0.0283369572
1.4.5.1.3-9,GENSUB96,"Lift Shaft Glazing - BD Approval",7112,"CCGTD1_IPS",TT_Task,"58689",-,-,-,100,TK_Complete,26/11/2018,09/11/2018,24/01/2019,07/01/2019,"","","GENSUB98 FF","GENSUB98",173,208,182,216,40,48,42,50,39,,"CCGT D1_Integrated Programme Schedule;CIVILS;GENERAL & PRELIMINARIES;Submission to RO (Responsible Officer) for Approval;General Submissions",0,1,0.0,0.0012207528,0.0,59,1.0,0.0000812387,0.0,0.0030769231,0.0,0.0031331593,0.0,0.1322869955,1.0,0.0
1.4.5.1.3-10,GENSUB98,"Lift Shaft Glazing - BD Consent",7112,"CCGTD1_IPS",TT_Task,"58689",-,-,-,100,TK_Complete,26/01/2019,06/12/2018,22/02/2019,11/01/2019,"GENSUB96 FF","GENSUB96","LIFT1020 FS","LIFT1020",182,211,186,217,42,49,43,50,44,,"CCGT D1_Integrated Programme Schedule;CIVILS;GENERAL & PRELIMINARIES;Submission to RO (Responsible Officer) for Approval;General Submissions",1,1,0.000000207,0.001017294,0.0002034588,27,0.0,0.0001503957,0.0068493151,0.0030769231,0.0003125,0.0026109661,0.0006435006,0.0605381166,0.0,0.0283369572
1.4.5.1.3-11,GENSUB9A,"Aluminum - BD Approval",7112,"CCGTD1_IPS",TT_Task,"58689",-,-,-,100,TK_Complete,26/11/2018,08/11/2018,24/01/2019,07/01/2019,"","","GENSUB9B FF","GENSUB9B",173,207,182,216,40,48,42,50,39,,"CCGT D1_Integrated Programme Schedule;CIVILS;GENERAL & PRELIMINARIES;Submission to RO (Responsible Officer) for Approval;General Submissions",0,1,0.0,0.0002034588,0.0,59,1.0,0.0000812387,0.0,0.0030769231,0.0,0.0005221932,0.0,0.1322869955,1.0,0.0
1.4.5.1.3-12,GENSUB9B,"Aluminum - BD Consent",7112,"CCGTD1_IPS",TT_Task,"58689",-,-,-,100,TK_Complete,26/01/2019,06/12/2018,22/02/2019,11/01/2019,"GENSUB9A FF","GENSUB9A","","",182,211,186,217,42,49,43,50,44,,"CCGT D1_Integrated Programme Schedule;CIVILS;GENERAL & PRELIMINARIES;Submission to RO (Responsible Officer) for Approval;General Submissions",1,0,0.0,0.0,0.0002034588,27,0.2,0.0001503957,0.0068493151,0.0,0.0,0.0,0.0006435006,0.0605381166,0.2,0.0283369572
1.4.5.1.3-13,GENSUB40a,"TTM for Pumping Station - RO Review and Comment [APPROVED]",7112,"CCGTD1_IPS",TT_Task,"58689",-,-,-,100,TK_Complete,27/11/2017,08/09/2017,10/12/2017,29/11/2017,"GENSUB40 FS","GENSUB40","GENSUB40b FS","GENSUB40b",121,147,123,158,28,34,28,37,15,,"CCGT D1_Integrated Programme Schedule;CIVILS;GENERAL & PRELIMINARIES;Submission to RO (Responsible Officer) for Approval;General Submissions",1,1,0.0000024014,0.0118006104,0.0002034588,13,0.0,0.0001503957,0.0068493151,0.0030769231,0.003625,0.0302872063,0.0006435006,0.0291479821,0.0,0.0283369572
1.4.5.1.3-14,GENSUB40b,"TTM for Pumping Station - Issue of LWC for barricading the areas",7112,"CCGTD1_IPS",TT_Task,"58689",-,-,-,100,TK_Complete,27/11/2017,30/11/2017,27/11/2017,05/12/2017,"GENSUB40a FS","GENSUB40a","GENSUB40c FS","GENSUB40c",121,158,121,159,28,37,28,37,15,,"CCGT D1_Integrated Programme Schedule;CIVILS;GENERAL & PRELIMINARIES;Submission to RO (Responsible Officer) for Approval;General Submissions",1,1,0.00000472,0.0115971516,0.0004069176,0,0.4,0.0000812387,0.0068493151,0.0030769231,0.007125,0.0297650131,0.0012870013,0.0,0.4,0.0
1.4.5.1.3-15,GENSUB40c,"TTM for Pumping Station - Barrication as per approved site layout and TTM",7112,"CCGTD1_IPS",TT_Task,"58689",-,-,-,100,TK_Complete,27/11/2017,05/12/2017,27/11/2017,05/12/2017,"GENSUB40b FS","GENSUB40b","GENSUB41 FS","GENSUB41",121,159,121,159,28,37,28,37,15,,"CCGT D1_Integrated Programme Schedule;CIVILS;GENERAL & PRELIMINARIES;Submission to RO (Responsible Officer) for Approval;General Submissions",1,1,0.0000069559,0.0113936928,0.0006103764,0,1.0,0.0000812387,0.0068493151,0.0030769231,0.0105,0.0292428198,0.0019305019,0.0,1.0,0.0
1.4.5.1.3-16,GENSUB50a,"TTM for Shaft D - RO Review and Comment [APPROVED]",7112,"CCGTD1_IPS",TT_Task,"58689",-,-,-,100,TK_Complete,27/11/2017,08/09/2017,10/12/2017,27/12/2017,"GENSUB50 FS","GENSUB50","GENSUB50b FS,EV007012 SS","GENSUB50b,EV007012",121,147,123,162,28,34,28,37,15,,"CCGT D1_Integrated Programme Schedule;CIVILS;GENERAL & PRELIMINARIES;Submission to RO (Responsible Officer) for Approval;General Submissions",1,1,0.0000051341,0.0252288911,0.0002034588,13,0.0,0.0001503957,0.0068493151,0.0030769231,0.00775,0.0647519582,0.0006435006,0.0291479821,0.0,0.0283369572
1.4.5.1.3-17,GENSUB50b,"TTM for Shaft D - Issue of LWC to barricade the proposed temp. EVA location",7112,"CCGTD1_IPS",TT_Task,"58689",-,-,-,100,TK_Complete,01/03/2018,28/12/2017,01/03/2018,28/12/2017,"GENSUB50a FS","GENSUB50a","GENSUB50c FS,GENSUB50b1 FS","GENSUB50c,GENSUB50b1",135,162,135,162,31,38,31,38,21,,"CCGT D1_Integrated Programme Schedule;CIVILS;GENERAL & PRELIMINARIES;Submission to RO (Responsible Officer) for Approval;General Submissions",1,2,0.0000101854,0.0250254323,0.0004069176,0,1.0,0.0000812387,0.0068493151,0.0061538462,0.015375,0.064229765,0.0012870013,0.0,1.0,0.0
1.4.5.1.3-18,GENSUB50c,"TTM for Shaft D - Barrication as per approved temporary EVA location",7112,"CCGTD1_IPS",TT_Task,"58689",-,-,-,100,TK_Complete,02/03/2018,29/12/2017,07/03/2018,03/01/2018,"GENSUB50b FS","GENSUB50b","GENSUB50d FS","GENSUB50d",135,163,136,163,31,38,31,38,21,,"CCGT D1_Integrated Programme Schedule;CIVILS;GENERAL & PRELIMINARIES;Submission to RO (Responsible Officer) for Approval;General Submissions",1,1,0.0000075148,0.0246185148,0.0006103764,5,1.0,0.000100449,0.0068493151,0.0030769231,0.01134375,0.0631853786,0.0019305019,0.0112107623,1.0,0.007871377
1.4.5.1.3-19,GENSUB50d,"TTM for Shaft D - Issue of XP for EVA diversion",7112,"CCGTD1_IPS",TT_Task,"58689",-,-,-,100,TK_Complete,08/03/2018,04/01/2018,08/03/2018,26/01/2018,"GENSUB50c FS","GENSUB50c","GENSUB50e FS,GENSUB50d1 FS","GENSUB50e,GENSUB50d1",136,163,136,167,31,38,31,38,22,,"CCGT D1_Integrated Programme Schedule;CIVILS;GENERAL & PRELIMINARIES;Submission to RO (Responsible Officer) for Approval;General Submissions",1,2,0.0000123591,0.024415056,0.0008138352,0,0.0,0.0000812387,0.0068493151,0.0061538462,0.01865625,0.0626631854,0.0025740026,0.0,0.0,0.0
1.4.5.1.3-20,GENSUB50e,"TTM for Shaft D - Construct temporary EVA",7112,"CCGTD1_IPS",TT_Task,"58689",-,-,-,100,TK_Complete,23/04/2018,26/02/2018,26/04/2018,01/03/2018,"GENSUB50d FS,GENSUB60e FS,GENSUB50d1 FS","GENSUB50d,GENSUB60e,GENSUB50d1","SFD00010 FS,GENSUB50f FS,GENSUB60f FS","SFD00010,GENSUB50f,GENSUB60f",142,171,143,171,33,40,33,40,25,,"CCGT D1_Integrated Programme Schedule;CIVILS;GENERAL & PRELIMINARIES;Submission to RO (Responsible Officer) for Approval;General Submissions",3,3,0.0000356488,0.0240081384,0.0028484232,3,1.0,0.0002818373,0.0205479452,0.0092307692,0.0538125,0.061618799,0.009009009,0.0067264574,1.0,0.0821948886
1.4.5.1.3-21,GENSUB60a,"TTM for Sea Bank Road - RO Review and Comment [APPROVED]",7112,"CCGTD1_IPS",TT_Task,"58689",-,-,-,100,TK_Complete,27/11/2017,08/09/2017,10/12/2017,27/12/2017,"","","GENSUB60b FS,EV007013 SS","GENSUB60b,EV007013",121,147,123,162,28,34,28,37,15,,"CCGT D1_Integrated Programme Schedule;CIVILS;GENERAL & PRELIMINARIES;Submission to RO (Responsible Officer) for Approval;General Submissions",0,1,0.0,0.0254323499,0.0,13,0.0,0.0000812387,0.0,0.0030769231,0.0,0.0652741514,0.0,0.0291479821,0.0,0.0
1.4.5.1.3-22,GENSUB60b,"TTM for Sea Bank Road - Issue of LWC to barricade the proposed hammer head locations",7112,"CCGTD1_IPS",TT_Task,"58689",-,-,-,100,TK_Complete,01/03/2018,28/12/2017,01/03/2018,28/12/2017,"GENSUB60a FS","GENSUB60a","GENSUB60c FS,GENSUB60b1 FS","GENSUB60c,GENSUB60b1",135,162,135,162,31,38,31,38,21,,"CCGT D1_Integrated Programme Schedule;CIVILS;GENERAL & PRELIMINARIES;Submission to RO (Responsible Officer) for Approval;General Submissions",1,2,0.0000051341,0.0252288911,0.0002034588,0,1.0,0.0000812387,0.0068493151,0.0061538462,0.00775,0.0647519582,0.0006435006,0.0,1.0,0.0
1.4.5.1.3-23,GENSUB60c,"TTM for Sea Bank Road - Barrication as per approved hammer head locations",7112,"CCGTD1_IPS",TT_Task,"58689",-,-,-,100,TK_Complete,02/03/2018,29/12/2017,07/03/2018,03/01/2018,"GENSUB60b FS","GENSUB60b","GENSUB60d FS","GENSUB60d",135,163,136,163,31,38,31,38,21,,"CCGT D1_Integrated Programme Schedule;CIVILS;GENERAL & PRELIMINARIES;Submission to RO (Responsible Officer) for Approval;General Submissions",1,1,0.0000050513,0.0248219736,0.0004069176,5,1.0,0.000100449,0.0068493151,0.0030769231,0.007625,0.0637075718,0.0012870013,0.0112107623,1.0,0.007871377
1.4.5.1.3-24,GENSUB60d,"TTM for Sea Bank Road - Issue of XP for hammer heads construction",7112,"CCGTD1_IPS",TT_Task,"58689",-,-,-,100,TK_Complete,08/03/2018,04/01/2018,08/03/2018,26/01/2018,"GENSUB60c FS","GENSUB60c","GENSUB60e FS,GENSUB60d1 FS","GENSUB60e,GENSUB60d1",136,163,136,167,31,38,31,38,22,,"CCGT D1_Integrated Programme Schedule;CIVILS;GENERAL & PRELIMINARIES;Submission to RO (Responsible Officer) for Approval;General Submissions",1,2,0.0000099783,0.0246185148,0.0006103764,0,0.0,0.0000812387,0.0068493151,0.0061538462,0.0150625,0.0631853786,0.0019305019,0.0,0.0,0.0
1.4.5.1.3-25,GENSUB60e,"TTM for Sea Bank Road - Hammer heads construction",7112,"CCGTD1_IPS",TT_Task,"58689",-,-,-,100,TK_Complete,01/03/2018,29/01/2018,09/03/2018,24/02/2018,"GENSUB60d FS,GENSUB60d1 FS","GENSUB60d,GENSUB60d1","GENSUB50e FS,GENSUB61 FS","GENSUB50e,GENSUB61",135,167,136,171,31,39,31,39,21,,"CCGT D1_Integrated Programme Schedule;CIVILS;GENERAL & PRELIMINARIES;Submission to RO (Responsible Officer) for Approval;General Submissions",2,2,0.0000295624,0.0242115972,0.0012207528,8,0.0,0.0002195528,0.0136986301,0.0061538462,0.044625,0.0621409922,0.0038610039,0.0179372197,0.0,0.0566739144
1.4.5.1.3-26,GENSUB05,"Supervision Plans - Preparation and Submission to RO",7112,"CCGTD1_IPS",TT_Task,"58689",-,-,-,100,TK_Complete,29/05/2017,29/05/2017,11/06/2017,11/06/2017,"COMM FS","COMM","GENSUB06 FS","GENSUB06",95,132,97,134,22,30,22,31,6,,"CCGT D1_Integrated Programme Schedule;CIVILS;GENERAL & PRELIMINARIES;Submission to RO (Responsible Officer) for Approval;General Submissions",1,1,0.0000212402,0.1047812818,0.0004069176,13,1.0,0.0000822512,0.0068493151,0.0030769231,0.0320625,0.2689295039,0.0012870013,0.0291479821,1.0,0.0004148428
1.4.5.1.3-27,GENSUB06,"Supervision Plans - RO Review and Comment",7112,"CCGTD1_IPS",TT_Task,"58689",-,-,-,100,TK_Complete,12/06/2017,12/06/2017,18/06/2017,18/06/2017,"GENSUB05 FS","GENSUB05","CWSd1BA8 FS,DBCp1BA8 FS,PPSp1BA8 FS,SEAp1BA8 FS,SFAt1BA8 FS,SFDt1BA8 FS,SFFp1BA8 FS,SCWd1BA8 FS,SCWp1BA8 FS,SCWtaBA8 FS,ICMp1BA8 FS,ICMt1BA8 FS,POWd1BA8 FS,POWe1BA8 FS,SBHS2BA8 FS,SBHS3BA8 FS,SBOE2BA8 FS,SBTH2BA8 FS,SBTH3BA8 FS,THCL2BA8 FS","CWSd1BA8,DBCp1BA8,PPSp1BA8,SEAp1BA8,SFAt1BA8,SFDt1BA8,SFFp1BA8,SCWd1BA8,SCWp1BA8,SCWtaBA8,ICMp1BA8,ICMt1BA8,POWd1BA8,POWe1BA8,SBHS2BA8,SBHS3BA8,SBOE2BA8,SBTH2BA8,SBTH3BA8,THCL2BA8",97,134,98,135,22,31,23,31,7,,"CCGT D1_Integrated Programme Schedule;CIVILS;GENERAL & PRELIMINARIES;Submission to RO (Responsible Officer) for Approval;General Submissions",1,20,0.000042439,0.104577823,0.0006103764,6,1.0,0.0001512573,0.0068493151,0.0615384615,0.0640625,0.2684073107,0.0019305019,0.0134529148,1.0,0.0286899626
1.4.5.1.3-28,GENSUB10,"Structural Steel Shop Drawing & Calculation - Preparation and Submission to RO (1st round)",7112,"CCGTD1_IPS",TT_Task,"58689",-,-,-,100,TK_Complete,01/09/2017,01/09/2017,28/09/2017,02/11/2017,"PROSC030 FS","PROSC030","GENSUB11 FS,PROMA020 FS","GENSUB11,PROMA020",109,146,113,154,25,34,26,36,11,,"CCGT D1_Integrated Programme Schedule;CIVILS;GENERAL & PRELIMINARIES;Submission to RO (Responsible Officer) for Approval;General Submissions",1,2,0.00001042,0.018311292,0.0006103764,27,0.0,0.0001640443,0.0068493151,0.0061538462,0.0157291667,0.046997389,0.0019305019,0.0605381166,0.0,0.0339294261
1.4.5.1.3-29,GENSUB11,"Structural Steel Shop Drawing & Calculation - RO Review and Comment (1st round)",7112,"CCGTD1_IPS",TT_Task,"58689",-,-,-,100,TK_Complete,13/11/2017,03/11/2017,26/11/2017,23/11/2017,"GENSUB10 FS","GENSUB10","PROMA020 FF","PROMA020",119,155,121,157,27,36,28,36,14,,"CCGT D1_Integrated Programme Schedule;CIVILS;GENERAL & PRELIMINARIES;Submission to RO (Responsible Officer) for Approval;General Submissions",1,1,0.0,0.0181078332,0.0008138352,13,0.2,0.0001198606,0.0068493151,0.0030769231,0.0,0.0464751958,0.0025740026,0.0291479821,0.2,0.0158252377
1.4.5.1.3-30,GENSUB15,"Roof Cladding Shop Drawing & Calculation - RO Review and Comment",7112,"CCGTD1_IPS",TT_Task,"58689",-,-,-,100,TK_Complete,26/02/2018,27/01/2018,11/03/2018,05/02/2018,"MCGZDN10 FS","MCGZDN10","MCGZDN30 FS,MCGZDN40 FS","MCGZDN30,MCGZDN40",134,167,136,168,31,39,31,39,19,,"CCGT D1_Integrated Programme Schedule;CIVILS;GENERAL & PRELIMINARIES;Submission to RO (Responsible Officer) for Approval;General Submissions",1,2,0.0000010765,0.0026449644,0.0008138352,13,1.0,0.0001757671,0.0068493151,0.0061538462,0.001625,0.0067885117,0.0025740026,0.0291479821,1.0,0.0387328081
1.4.5.1.3-31,GENSUB16,"Roof Cladding Shop Drawing & Calculation - RO Comment and Approval",7112,"CCGTD1_IPS",TT_Task,"58689",-,-,-,100,TK_Complete,26/03/2018,10/02/2018,08/04/2018,13/02/2018,"MCGZDN40 FS","MCGZDN40","THRF0510 FS,THCL2BA5b FS","THRF0510,THCL2BA5b",138,169,140,169,32,39,32,39,23,,"CCGT D1_Integrated Programme Schedule;CIVILS;GENERAL & PRELIMINARIES;Submission to RO (Responsible Officer) for Approval;General Submissions",1,2,0.0000014077,0.002034588,0.0012207528,13,1.0,0.0001918062,0.0068493151,0.0061538462,0.002125,0.0052219321,0.0038610039,0.0291479821,1.0,0.0453048312
1.4.5.1.3-32,GENSUB20,"Irrigation Shop Drawing - RO Review and Comment",7112,"CCGTD1_IPS",TT_Task,"58689",-,-,-,100,TK_Complete,08/03/2019,24/03/2018,04/04/2019,10/10/2018,"IRRIDN10 FF","IRRIDN10","IRRIDN20 FF","IRRIDN20",188,175,192,203,43,40,44,47,48,,"CCGT D1_Integrated Programme Schedule;CIVILS;GENERAL & PRELIMINARIES;Submission to RO (Responsible Officer) for Approval;General Submissions",1,1,0.0000008695,0.0012207528,0.0008138352,27,0.0,0.0001924907,0.0068493151,0.0030769231,0.0013125,0.0031331593,0.0025740026,0.0605381166,0.0,0.045585308
1.4.5.1.3-33,GENSUB21,"Irrigation Shop Drawing - RO Comment and Approval",7112,"CCGTD1_IPS",TT_Task,"58689",-,-,-,100,TK_Complete,19/04/2019,20/07/2018,02/05/2019,12/02/2019,"IRRIDN20 FF","IRRIDN20","IRRI0010 FF","IRRI0010",194,192,196,221,45,44,45,51,55,,"CCGT D1_Integrated Programme Schedule;CIVILS;GENERAL & PRELIMINARIES;Submission to RO (Responsible Officer) for Approval;General Submissions",1,1,0.0000008695,0.0008138352,0.0012207528,13,0.0,0.0002899615,0.0068493151,0.0030769231,0.0013125,0.0020887728,0.0038610039,0.0291479821,0.0,0.0855237528
1.4.5.1.3-34,GENSUB25,"Lift Shop Drawing - RO Review and Comment (AD TBC)",7112,"CCGTD1_IPS",TT_Task,"58689",-,-,-,100,TK_Complete,14/06/2018,14/06/2018,27/06/2018,27/06/2018,"LIFTDN10 FS","LIFTDN10","LIFTDN20 FS","LIFTDN20",150,186,152,188,35,43,35,44,30,,"CCGT D1_Integrated Programme Schedule;CIVILS;GENERAL & PRELIMINARIES;Submission to RO (Responsible Officer) for Approval;General Submissions",1,1,0.000001739,0.0014242116,0.0012207528,13,1.0,0.0002413295,0.0068493151,0.0030769231,0.002625,0.0036553525,0.0038610039,0.0291479821,1.0,0.0655969031
1.4.5.1.3-35,GENSUB26,"Lift Shop Drawing - RO Comment and Approval (AD TBC)",7112,"CCGTD1_IPS",TT_Task,"58689",-,-,-,100,TK_Complete,04/08/2018,05/07/2018,10/08/2018,11/07/2018,"LIFTDN20 FS","LIFTDN20","PROPE020 FS","PROPE020",157,189,158,190,36,44,36,44,34,,"CCGT D1_Integrated Programme Schedule;CIVILS;GENERAL & PRELIMINARIES;Submission to RO (Responsible Officer) for Approval;General Submissions",1,1,0.0000016562,0.001017294,0.0016276704,6,1.0,0.000325436,0.0068493151,0.0030769231,0.0025,0.0026109661,0.0051480051,0.0134529148,1.0,0.1000593875
1.4.5.1.3-36,GENSUB30,"CWP Manufacturing Drawing - Preparation and Submission to RO",7112,"CCGTD1_IPS",TT_Task,"58689",-,-,-,100,TK_Complete,26/02/2018,31/12/2017,16/03/2018,18/01/2018,"PROMA009 SS","PROMA009","GENSUB31 FS","GENSUB31",134,163,137,165,31,38,32,38,19,,"CCGT D1_Integrated Programme Schedule;CIVILS;GENERAL & PRELIMINARIES;Submission to RO (Responsible Officer) for Approval;General Submissions",1,1,0.0000000414,0.0138351984,0.0002034588,18,1.0,0.0001013166,0.0068493151,0.0030769231,0.0000625,0.0355091384,0.0006435006,0.0403587444,1.0,0.0082268585
1.4.5.1.3-37,GENSUB31,"CWP Manufacturing Drawing - RO Review and Comment",7112,"CCGTD1_IPS",TT_Task,"58689",-,-,-,100,TK_Complete,17/03/2018,19/01/2018,23/03/2018,25/01/2018,"GENSUB30 FS","GENSUB30","PROMA011 FS","PROMA011",137,166,138,166,32,38,32,38,22,,"CCGT D1_Integrated Programme Schedule;CIVILS;GENERAL & PRELIMINARIES;Submission to RO (Responsible Officer) for Approval;General Submissions",1,1,0.0000027741,0.0136317396,0.0004069176,6,1.0,0.0001674807,0.0068493151,0.0030769231,0.0041875,0.0349869452,0.0012870013,0.0134529148,1.0,0.0353375006
1.4.5.1.3-38,GENSUB36,"Precast Concrete Intake Chamber Fabrication Drawing - Preparation and Submission to RO",7112,"CCGTD1_IPS",TT_Task,"58689",-,-,-,100,TK_Complete,26/12/2018,04/12/2018,24/01/2019,31/12/2018,"PROSC080 FS","PROSC080","GENSUB37 FS","GENSUB37",178,211,182,215,41,49,42,50,42,,"CCGT D1_Integrated Programme Schedule;CIVILS;GENERAL & PRELIMINARIES;Submission to RO (Responsible Officer) for Approval;General Submissions",1,1,0.0000001794,0.0016276704,0.0006103764,29,1.0,0.0001349755,0.0068493151,0.0030769231,0.0002708333,0.0041775457,0.0019305019,0.0650224215,1.0,0.0220185474
1.4.5.1.3-39,GENSUB37,"Precast Concrete Intake Chamber Fabrication Drawing - RO Review and Comment",7112,"CCGTD1_IPS",TT_Task,"58689",-,-,-,100,TK_Complete,27/01/2019,01/01/2019,25/02/2019,31/01/2019,"GENSUB36 FS","GENSUB36","PROMA050 FS","PROMA050",182,215,186,219,42,50,43,51,46,,"CCGT D1_Integrated Programme Schedule;CIVILS;GENERAL & PRELIMINARIES;Submission to RO (Responsible Officer) for Approval;General Submissions",1,1,0.000000345,0.0014242116,0.0008138352,29,1.0,0.0001961283,0.0068493151,0.0030769231,0.0005208333,0.0036553525,0.0025740026,0.0650224215,1.0,0.0470757964
1.4.5.1.3-40,GENSUB35,"Precast Concrete Intake Chamber - Submission of Quality Plan and Inspection Plan (Approval status TBC)",7112,"CCGTD1_IPS",TT_Task,"58689",-,-,-,100,TK_Complete,26/11/2018,03/08/2018,09/12/2018,19/11/2018,"PROSC080 FS","PROSC080","SCWp2BA8 FS","SCWp2BA8",173,194,175,209,40,45,40,48,39,,"CCGT D1_Integrated Programme Schedule;CIVILS;GENERAL & PRELIMINARIES;Submission to RO (Responsible Officer) for Approval;General Submissions",1,1,0.0000008005,0.0016276704,0.0006103764,13,0.0,0.0001053276,0.0068493151,0.0030769231,0.0012083333,0.0041775457,0.0019305019,0.0291479821,0.0,0.0098703833
1.4.5.1.3-41,GENSUB40,"TTM for Pumping Station - Preparation and Submission to RO",7112,"CCGTD1_IPS",TT_Task,"58689",-,-,-,100,TK_Complete,08/08/2017,08/08/2017,21/08/2017,07/09/2017,"","","GENSUB40a FS","GENSUB40a",105,142,107,146,24,33,25,34,10,,"CCGT D1_Integrated Programme Schedule;CIVILS;GENERAL & PRELIMINARIES;Submission to RO (Responsible Officer) for Approval;General Submissions",0,1,0.0,0.0120040692,0.0,13,0.0,0.0000812387,0.0,0.0030769231,0.0,0.0308093995,0.0,0.0291479821,0.0,0.0
1.4.5.1.3-42,GENSUB41,"TTM for Pumping Station - Declaration of unplanted area",7112,"CCGTD1_IPS",TT_Task,"58689",-,-,-,100,TK_Complete,11/09/2017,06/12/2017,24/09/2017,16/12/2017,"GENSUB40c FS","GENSUB40c","AREA6XX FS,PPS10015 FS","AREA6XX,PPS10015",110,159,112,161,25,37,26,37,11,,"CCGT D1_Integrated Programme Schedule;CIVILS;GENERAL & PRELIMINARIES;Submission to RO (Responsible Officer) for Approval;General Submissions",1,1,0.0000091089,0.011190234,0.0008138352,13,1.0,0.0001503957,0.0068493151,0.0030769231,0.01375,0.0287206266,0.0025740026,0.0291479821,1.0,0.0283369572
1.4.5.1.3-43,GENSUB50,"TTM for Shaft D - Preparation and Submission to RO",7112,"CCGTD1_IPS",TT_Task,"58689",-,-,-,100,TK_Complete,16/12/2017,08/08/2017,29/12/2017,07/09/2017,"","","GENSUB50a FS","GENSUB50a",124,142,126,146,29,33,29,34,16,,"CCGT D1_Integrated Programme Schedule;CIVILS;GENERAL & PRELIMINARIES;Submission to RO (Responsible Officer) for Approval;General Submissions",0,1,0.0,0.0254323499,0.0,13,0.0,0.0000812387,0.0,0.0030769231,0.0,0.0652741514,0.0,0.0291479821,0.0,0.0
1.4.5.1.3-44,GENSUB51,"TTM for Shaft D - Declaration of unplanted area",7112,"CCGTD1_IPS",TT_Task,"58689",-,-,-,100,TK_Complete,01/05/2018,07/03/2018,07/05/2018,18/03/2018,"GENSUB50f FS","GENSUB50f","AREA7XX FS","AREA7XX",143,172,144,174,33,40,33,40,26,,"CCGT D1_Integrated Programme Schedule;CIVILS;GENERAL & PRELIMINARIES;Submission to RO (Responsible Officer) for Approval;General Submissions",1,0,0.0,0.0,0.0032553408,6,0.2,0.0000894862,0.0068493151,0.0,0.0,0.0,0.0102960103,0.0134529148,0.2,0.0033793894
1.4.5.1.3-45,GENSUB60,"TTM for Sea Bank Road - Preparation and Submission to RO",7112,"CCGTD1_IPS",TT_Task,"58689",-,-,-,100,TK_Complete,31/08/2017,08/08/2017,13/09/2017,07/09/2017,"","","","",109,142,111,146,25,33,25,34,11,,"CCGT D1_Integrated Programme Schedule;CIVILS;GENERAL & PRELIMINARIES;Submission to RO (Responsible Officer) for Approval;General Submissions",0,0,0.0,0.0,0.0,13,0.0,0.0000812387,0.0,0.0,0.0,0.0,0.0,0.0291479821,0.0,0.0
1.4.5.1.3-46,GENSUB61,"TTM for Sea Bank Road - Declaration of unplanted area",7112,"CCGTD1_IPS",TT_Task,"58689",-,-,-,100,TK_Complete,27/04/2018,07/03/2018,03/05/2018,18/03/2018,"GENSUB60e FS,GENSUB60f FS","GENSUB60e,GENSUB60f","AREA8XX FS,OAM10010 FS,DBC10010 FS,DBC20010 FS,EV007012 FF,EV007013 FF,SFE10025 FS","AREA8XX,OAM10010,DBC10010,DBC20010,EV007012,EV007013,SFE10025",143,172,144,174,33,40,33,40,26,,"CCGT D1_Integrated Programme Schedule;CIVILS;GENERAL & PRELIMINARIES;Submission to RO (Responsible Officer) for Approval;General Submissions",2,4,0.0000741958,0.0227873856,0.0032553408,6,0.6,0.0002855335,0.0136986301,0.0123076923,0.112,0.0584856397,0.0102960103,0.0134529148,0.6,0.0837093793
1.4.5.1.3-47,GENSUB50b1,"TTM for Shaft D - LWC 14 day expiry period",7112,"CCGTD1_IPS",TT_Task,"58689",-,-,-,100,TK_Complete,01/03/2018,29/12/2017,14/03/2018,11/01/2018,"GENSUB50b FS","GENSUB50b","GENSUB50d1 FS","GENSUB50d1",135,163,137,164,31,38,31,38,21,,"CCGT D1_Integrated Programme Schedule;CIVILS;GENERAL & PRELIMINARIES;Submission to RO (Responsible Officer) for Approval;General Submissions",1,1,0.0000075148,0.024415056,0.0006103764,13,1.0,0.0001311855,0.0068493151,0.0030769231,0.01134375,0.0626631854,0.0019305019,0.0291479821,1.0,0.0204655802
1.4.5.1.3-48,GENSUB60b1,"TTM for Sea Bank Road - LWC 14 day expiry period",7112,"CCGTD1_IPS",TT_Task,"58689",-,-,-,100,TK_Complete,01/03/2018,29/12/2017,14/03/2018,11/01/2018,"GENSUB60b FS","GENSUB60b","GENSUB60d1 FS","GENSUB60d1",135,163,137,164,31,38,31,38,21,,"CCGT D1_Integrated Programme Schedule;CIVILS;GENERAL & PRELIMINARIES;Submission to RO (Responsible Officer) for Approval;General Submissions",1,1,0.0000050513,0.0246185148,0.0004069176,13,1.0,0.0001311855,0.0068493151,0.0030769231,0.007625,0.0631853786,0.0012870013,0.0291479821,1.0,0.0204655802
1.4.5.1.3-49,GENSUB60d1,"TTM for Sea Bank Road - Extend expired LWC",7112,"CCGTD1_IPS",TT_Task,"58689",-,-,-,100,TK_Complete,08/03/2018,27/01/2018,08/03/2018,29/01/2018,"GENSUB60d FS,GENSUB60b1 FS","GENSUB60d,GENSUB60b1","GENSUB60e FS","GENSUB60e",136,167,136,167,31,39,31,39,22,,"CCGT D1_Integrated Programme Schedule;CIVILS;GENERAL & PRELIMINARIES;Submission to RO (Responsible Officer) for Approval;General Submissions",2,1,0.0000099369,0.024415056,0.001017294,0,0.8,0.0000812387,0.0136986301,0.0030769231,0.015,0.0626631854,0.0032175032,0.0,0.8,0.0
1.4.5.1.3-50,GENSUB50d1,"TTM for Shaft D - Extend expired LWC",7112,"CCGTD1_IPS",TT_Task,"58689",-,-,-,100,TK_Complete,08/03/2018,27/01/2018,08/03/2018,29/01/2018,"GENSUB50d FS,GENSUB50b1 FS","GENSUB50d,GENSUB50b1","GENSUB50e FS","GENSUB50e",136,167,136,167,31,39,31,39,22,,"CCGT D1_Integrated Programme Schedule;CIVILS;GENERAL & PRELIMINARIES;Submission to RO (Responsible Officer) for Approval;General Submissions",2,1,0.0000123177,0.0242115972,0.0012207528,0,1.0,0.0000812387,0.0136986301,0.0030769231,0.01859375,0.0621409922,0.0038610039,0.0,1.0,0.0
1.4.5.1.3-51,GENSUB50f,"TTM for Shaft D - Issue of LWC to barricade the proposed site area",7112,"CCGTD1_IPS",TT_Task,"58689",-,-,-,100,TK_Complete,27/04/2018,02/03/2018,30/04/2018,06/03/2018,"GENSUB50e FS","GENSUB50e","GENSUB51 FS,SFD00010 FS","GENSUB51,SFD00010",143,172,143,172,33,40,33,40,26,,"CCGT D1_Integrated Programme Schedule;CIVILS;GENERAL & PRELIMINARIES;Submission to RO (Responsible Officer) for Approval;General Submissions",1,2,0.0000006211,0.0006103764,0.003051882,3,1.0,0.000093647,0.0068493151,0.0061538462,0.0009375,0.0015665796,0.0096525097,0.0067264574,1.0,0.0050842552
1.4.5.1.3-52,GENSUB60f,"TTM for Sea Bank Road - Issue of LWC to barricade the proposed site area",7112,"CCGTD1_IPS",TT_Task,"58689",-,-,-,100,TK_Complete,23/04/2018,02/03/2018,26/04/2018,06/03/2018,"GENSUB50e FS","GENSUB50e","GENSUB61 FS","GENSUB61",142,172,143,172,33,40,33,40,25,,"CCGT D1_Integrated Programme Schedule;CIVILS;GENERAL & PRELIMINARIES;Submission to RO (Responsible Officer) for Approval;General Submissions",1,1,0.0000374291,0.0229908444,0.003051882,3,0.8,0.000093647,0.0068493151,0.0030769231,0.0565,0.0590078329,0.0096525097,0.0067264574,0.8,0.0050842552
1.4.5.2,58668,"Statutory Submissions & Approval",7112,"CCGTD1_IPS",WBS,"58627",,,,100,Complete,31/03/2017,11/04/2017,01/01/2020,,,,,,87,125,231,,20,29,53,,,,"CCGT D1_Integrated Programme Schedule;CIVILS;GENERAL & PRELIMINARIES"
1.4.5.2.1,58687,"Environmental Permit",7112,"CCGTD1_IPS",WBS,"58668",,,,,NotStart,,,,,,,,,,,,,,,,,,,"CCGT D1_Integrated Programme Schedule;CIVILS;GENERAL & PRELIMINARIES;Statutory Submissions & Approval"
1.4.5.2.2,58682,"BD Submissions (Contractor's Design)",7112,"CCGTD1_IPS",WBS,"58668",,,,100,Complete,22/06/2017,22/06/2017,24/05/2019,,,,,,99,135,199,,23,31,46,,,,"CCGT D1_Integrated Programme Schedule;CIVILS;GENERAL & PRELIMINARIES;Statutory Submissions & Approval"
1.4.5.2.2.1,58686,"Power Island Area",7112,"CCGTD1_IPS",WBS,"58682",,,,100,Complete,22/06/2017,22/06/2017,20/05/2018,30/05/2018,,,,,99,135,146,184,23,31,34,43,,,"CCGT D1_Integrated Programme Schedule;CIVILS;GENERAL & PRELIMINARIES;Statutory Submissions & Approval;BD Submissions (Contractor's Design)"
1.4.5.2.2.1-1,POW_BA58,"BA5 & BA8 - Amendment for Excav & ELS Plan for Power Island Area (Open Cut)(Phase 1 & 2){7c2i}",7112,"CCGTD1_IPS",TT_Task,"58686",-,-,-,100,TK_Complete,22/06/2017,22/06/2017,19/09/2017,25/09/2017,"POWe1BA8 FS,POWtSA10 FF,SFJt1BA5a FF","POWe1BA8,POWtSA10,SFJt1BA5a","THCP0015 FS","THCP0015",99,135,111,149,23,31,26,34,7,,"CCGT D1_Integrated Programme Schedule;CIVILS;GENERAL & PRELIMINARIES;Statutory Submissions & Approval;BD Submissions (Contractor's Design);Power Island Area",3,1,0.0001156135,0.0429298067,0.0028484232,89,0.4,0.0004929643,0.0205479452,0.0030769231,0.1745208333,0.1101827676,0.009009009,0.1995515695,0.4,0.1687037592
1.4.5.2.2.1-2,POW_BA58_1,"BA8 - Consent for Excav & ELS Plan for Power Island Area (Open Cut)(Phase 3){7c2i}",7112,"CCGTD1_IPS",TT_Task,"58686",-,-,-,100,TK_Complete,22/06/2017,26/09/2017,19/09/2017,20/10/2017,"","","","",99,149,111,153,23,34,26,35,7,,"CCGT D1_Integrated Programme Schedule;CIVILS;GENERAL & PRELIMINARIES;Statutory Submissions & Approval;BD Submissions (Contractor's Design);Power Island Area",0,0,0.0,0.0,0.0,89,1.0,0.0000812387,0.0,0.0,0.0,0.0,0.0,0.1995515695,1.0,0.0
1.4.5.2.2.1-3,POW_BA58_2,"BA5 & BA8 -Type II Amendment Power Island  Open Cut (Phase 1,2,3) {7c2ii}",7112,"CCGTD1_IPS",TT_Task,"58686",-,-,-,100,TK_Complete,22/06/2017,26/10/2017,19/09/2017,23/11/2017,"","","","",99,153,111,157,23,35,26,36,7,,"CCGT D1_Integrated Programme Schedule;CIVILS;GENERAL & PRELIMINARIES;Statutory Submissions & Approval;BD Submissions (Contractor's Design);Power Island Area",0,0,0.0,0.0,0.0,89,1.0,0.0000812387,0.0,0.0,0.0,0.0,0.0,0.1995515695,1.0,0.0
1.4.5.2.2.1-4,POW_BA58_3,"BA5 & BA8 -Type II Amendment (for grout curtain) Power Island  Open Cut (Phase 1,2,3){7c2iii}",7112,"CCGTD1_IPS",TT_Task,"58686",-,-,-,100,TK_Complete,22/06/2017,15/12/2017,19/09/2017,09/01/2018,"","","","",99,161,111,164,23,37,26,38,7,,"CCGT D1_Integrated Programme Schedule;CIVILS;GENERAL & PRELIMINARIES;Statutory Submissions & Approval;BD Submissions (Contractor's Design);Power Island Area",0,0,0.0,0.0,0.0,89,1.0,0.0000812387,0.0,0.0,0.0,0.0,0.0,0.1995515695,1.0,0.0
1.4.5.2.2.1-5,POW_BA58_4,"BA8 -Consent for Power Island Open Cut (Phase 4){7c2iii}[WITHDRAWN]",7112,"CCGTD1_IPS",TT_Task,"58686",-,-,-,100,TK_Complete,23/04/2018,04/05/2018,20/05/2018,30/05/2018,"","","THCP0030 FS","THCP0030",142,181,146,184,33,42,34,43,25,,"CCGT D1_Integrated Programme Schedule;CIVILS;GENERAL & PRELIMINARIES;Statutory Submissions & Approval;BD Submissions (Contractor's Design);Power Island Area",0,1,0.0,0.0002034588,0.0,27,1.0,0.0000812387,0.0,0.0030769231,0.0,0.0005221932,0.0,0.0605381166,1.0,0.0
1.4.5.2.2.2,58685,"Outfall Modification (incl' Works Outside Lot Boundary)",7112,"CCGTD1_IPS",WBS,"58682",,,,,NotStart,,,,,,,,,,,,,,,,,,,"CCGT D1_Integrated Programme Schedule;CIVILS;GENERAL & PRELIMINARIES;Statutory Submissions & Approval;BD Submissions (Contractor's Design)"
1.4.5.2.2.3,58684,"Supplementary Cooling Water (SCW) Pump Sump A&A",7112,"CCGTD1_IPS",WBS,"58682",,,,100,Complete,28/11/2017,21/12/2017,26/01/2018,06/02/2018,,,,,121,161,130,168,28,37,30,39,,,"CCGT D1_Integrated Programme Schedule;CIVILS;GENERAL & PRELIMINARIES;Statutory Submissions & Approval;BD Submissions (Contractor's Design)"
1.4.5.2.2.3-1,SCW-BA58,"BA5 - Alternative for Temp works for SCW & Culvert Modifi (Wall Only)(Dry){5b1-alt} [DISAPPROVED]",7112,"CCGTD1_IPS",TT_Task,"58684",-,-,-,100,TK_Complete,28/11/2017,21/12/2017,26/01/2018,06/02/2018,"COMM FS,SCWtSA10 FS","COMM,SCWtSA10","","",121,161,130,168,28,37,30,39,15,,"CCGT D1_Integrated Programme Schedule;CIVILS;GENERAL & PRELIMINARIES;Statutory Submissions & Approval;BD Submissions (Contractor's Design);Supplementary Cooling Water (SCW) Pump Sump A&A",2,0,0.0,0.0,0.001017294,59,1.0,0.0001807502,0.0136986301,0.0,0.0,0.0,0.0032175032,0.1322869955,1.0,0.0407746438
1.4.5.2.2.3-2,SCW_BA58,"BA5 - Alternative for Temp works for SCW & Culvert Modif (Excav)(Dry){5b1-alt} [DISAPPROVED]",7112,"CCGTD1_IPS",TT_Task,"58684",-,-,-,100,TK_Complete,28/11/2017,21/12/2017,26/01/2018,06/02/2018,"SCWtSA20 FS","SCWtSA20","","",121,161,130,168,28,37,30,39,15,,"CCGT D1_Integrated Programme Schedule;CIVILS;GENERAL & PRELIMINARIES;Statutory Submissions & Approval;BD Submissions (Contractor's Design);Supplementary Cooling Water (SCW) Pump Sump A&A",1,0,0.0,0.0,0.0008138352,59,1.0,0.0002043068,0.0068493151,0.0,0.0,0.0,0.0025740026,0.1322869955,1.0,0.0504269075
1.4.5.2.2.4,58683,"Cooling Water System",7112,"CCGTD1_IPS",WBS,"58682",,,,100,Complete,22/06/2017,22/06/2017,24/05/2019,22/03/2019,,,,,99,135,199,227,23,31,46,52,,,"CCGT D1_Integrated Programme Schedule;CIVILS;GENERAL & PRELIMINARIES;Statutory Submissions & Approval;BD Submissions (Contractor's Design)"
1.4.5.2.2.4-1,SFA-BA58a,"BA5 - Amendment (Minor) for Temp.works for Shaft A, Pump Station, Diversion Culvert (Wall Only){4b4-2(r1)} [WITHDRAWN]",7112,"CCGTD1_IPS",TT_Task,"58683",-,-,-,100,TK_Complete,27/11/2017,21/12/2017,25/12/2017,02/01/2018,"SFAtSA10 FS","SFAtSA10","SFA-BA58a1 FS","SFA-BA58a1",121,161,125,163,28,37,29,38,15,,"CCGT D1_Integrated Programme Schedule;CIVILS;GENERAL & PRELIMINARIES;Statutory Submissions & Approval;BD Submissions (Contractor's Design);Cooling Water System",1,1,0.000008819,0.014242116,0.001017294,28,1.0,0.0002265524,0.0068493151,0.0030769231,0.0133125,0.0365535248,0.0032175032,0.0627802691,1.0,0.0595420023
1.4.5.2.2.4-2,SFA-BA58b,"BA8 - Consent for Temporary works for Shaft A, Pump Station, Diversion Culvert (Wall Only){4b4-2(r1)} [N.A.]",7112,"CCGTD1_IPS",TT_Task,"58683",-,-,-,100,TK_Complete,26/02/2018,30/01/2018,25/03/2018,30/01/2018,"SFA-BA58a1 FF","SFA-BA58a1","IBC10010 FS,PPS10015 FS,SFA10020 FF","IBC10010,PPS10015,SFA10020",134,167,138,167,31,39,32,39,19,,"CCGT D1_Integrated Programme Schedule;CIVILS;GENERAL & PRELIMINARIES;Statutory Submissions & Approval;BD Submissions (Contractor's Design);Cooling Water System",1,3,0.0000140359,0.0138351984,0.0014242116,27,1.0,0.0003147171,0.0068493151,0.0092307692,0.0211875,0.0355091384,0.0045045045,0.0605381166,1.0,0.095667328
1.4.5.2.2.4-3,SFA_BA58a,"BA5 - Amendment (Major) for Temp.works for Shaft A, Pump Station, Diversion Culvert (Excav & ELS) {4b4-3} [WITHDRAWN]",7112,"CCGTD1_IPS",TT_Task,"58683",-,-,-,100,TK_Complete,12/03/2018,14/02/2018,11/05/2018,23/03/2018,"SFAtSA21 FS","SFAtSA21","SFA10020 FF,SFA_BA58a1 FS","SFA10020,SFA_BA58a1",136,169,145,175,31,39,33,40,22,,"CCGT D1_Integrated Programme Schedule;CIVILS;GENERAL & PRELIMINARIES;Statutory Submissions & Approval;BD Submissions (Contractor's Design);Cooling Water System",1,2,0.0000115931,0.0284842319,0.0004069176,60,1.0,0.000209244,0.0068493151,0.0061538462,0.0175,0.0731070496,0.0012870013,0.134529148,1.0,0.0524499399
1.4.5.2.2.4-4,SFA_BA58b,"BA5 - Consent for Temporary works for Shaft A, Pump Station, Diversion Culvert (Excav & ELS) {4b4-4}",7112,"CCGTD1_IPS",TT_Task,"58683",-,-,-,100,TK_Complete,26/05/2018,28/06/2018,22/06/2018,25/07/2018,"SFA_BA58a1 FS,EV021010 FS","SFA_BA58a1,EV021010","EV011080 FS,EV017035 FF","EV011080,EV017035",147,188,151,192,34,44,35,44,28,,"CCGT D1_Integrated Programme Schedule;CIVILS;GENERAL & PRELIMINARIES;Statutory Submissions & Approval;BD Submissions (Contractor's Design);Cooling Water System",2,2,0.0000271196,0.0266531027,0.001017294,27,1.0,0.0002767574,0.0136986301,0.0061538462,0.0409375,0.0684073107,0.0032175032,0.0605381166,1.0,0.0801134018
1.4.5.2.2.4-5,SFE_BA58b,"BA8 - Consent (pipe jacking) for Temp.works for Shaft E & Discharge Culvert (Excav. & ELS){4b2-2(r1)}",7112,"CCGTD1_IPS",TT_Task,"58683",-,-,-,100,TK_Complete,11/06/2018,04/05/2018,08/07/2018,06/07/2018,"SFE_BA58a1 FS","SFE_BA58a1","EV011200 FS,DBC10010 FS,DBC20010 FS","EV011200,DBC10010,DBC20010",149,181,153,190,34,42,35,44,30,,"CCGT D1_Integrated Programme Schedule;CIVILS;GENERAL & PRELIMINARIES;Statutory Submissions & Approval;BD Submissions (Contractor's Design);Cooling Water System",1,3,0.0000045958,0.0225839268,0.0002034588,27,0.0,0.0001503957,0.0068493151,0.0092307692,0.0069375,0.0579634465,0.0006435006,0.0605381166,0.0,0.0283369572
1.4.5.2.2.4-6,SFF-BA58a,"BA5 - Resub.of (Type II) Amendment  for Zone A Sheet Pile Alternative {4b1-alt A-1} [APPROVED AS TYPE I]",7112,"CCGTD1_IPS",TT_Task,"58683",-,-,-,100,TK_Complete,27/11/2017,24/07/2017,26/12/2017,22/08/2017,"","","","",121,140,125,144,28,32,29,33,15,,"CCGT D1_Integrated Programme Schedule;CIVILS;GENERAL & PRELIMINARIES;Statutory Submissions & Approval;BD Submissions (Contractor's Design);Cooling Water System",0,0,0.0,0.0,0.0,29,1.0,0.0000812387,0.0,0.0,0.0,0.0,0.0,0.0650224215,1.0,0.0
1.4.5.2.2.4-7,SFF-BA58c,"BA5 - Submission of Zone C / Resequencing (originally an Alternative but resubmitted & approved as a Major Rev) {4b1-?}",7112,"CCGTD1_IPS",TT_Task,"58683",-,-,-,100,TK_Complete,26/01/2019,24/12/2018,26/03/2019,06/03/2019,"SFF-BA58b1 FS,SFF-BA58b2 FS","SFF-BA58b1,SFF-BA58b2","SFF-BA58d FS","SFF-BA58d",182,214,190,224,42,50,44,52,44,,"CCGT D1_Integrated Programme Schedule;CIVILS;GENERAL & PRELIMINARIES;Statutory Submissions & Approval;BD Submissions (Contractor's Design);Cooling Water System",2,1,0.0000022358,0.0054933876,0.0004069176,59,0.0,0.0001888037,0.0136986301,0.0030769231,0.003375,0.0140992167,0.0012870013,0.1322869955,0.0,0.0440745569
1.4.5.2.2.4-8,SFF-BA58d,"BA8 - Consent for Zone C / Resequencing {4b1-?}",7112,"CCGTD1_IPS",TT_Task,"58683",-,-,-,100,TK_Complete,27/04/2019,25/02/2019,24/05/2019,22/03/2019,"SFF-BA58c FS","SFF-BA58c","EV045010 FS","EV045010",195,223,199,227,45,52,46,52,55,,"CCGT D1_Integrated Programme Schedule;CIVILS;GENERAL & PRELIMINARIES;Statutory Submissions & Approval;BD Submissions (Contractor's Design);Cooling Water System",1,1,0.0000032295,0.0052899288,0.0006103764,27,1.0,0.0002419394,0.0068493151,0.0030769231,0.004875,0.0135770235,0.0019305019,0.0605381166,1.0,0.0658467993
1.4.5.2.2.4-9,SFDt1BA8,"BA8 - (1st) Consent  for Shaft D (Pipe Pile Wall & Grout Curtain) {4b3(r2)}",7112,"CCGTD1_IPS",TT_Task,"58683",-,-,-,100,TK_Complete,26/02/2018,19/01/2018,27/03/2018,12/02/2018,"SFDt1BA5 FS,GENSUB06 FS,SFD_BA05 FS","SFDt1BA5,GENSUB06,SFD_BA05","","",134,166,138,169,31,38,32,39,19,,"CCGT D1_Integrated Programme Schedule;CIVILS;GENERAL & PRELIMINARIES;Statutory Submissions & Approval;BD Submissions (Contractor's Design);Cooling Water System",3,0,0.0,0.0,0.0016276704,29,1.0,0.0003369743,0.0205479452,0.0,0.0,0.0,0.0051480051,0.0650224215,1.0,0.104787177
1.4.5.2.2.4-10,SFD_BA05,"BA5 - Resubmission of Temp works for Shaft D (Wall Only) {4b3(r2)}",7112,"CCGTD1_IPS",TT_Task,"58683",-,-,-,100,TK_Complete,06/10/2017,09/10/2017,04/12/2017,15/12/2017,"","","SFDt1BA8 FS","SFDt1BA8",114,151,122,161,26,35,28,37,12,,"CCGT D1_Integrated Programme Schedule;CIVILS;GENERAL & PRELIMINARIES;Statutory Submissions & Approval;BD Submissions (Contractor's Design);Cooling Water System",0,1,0.0,0.0002034588,0.0,59,0.2,0.0000812387,0.0,0.0030769231,0.0,0.0005221932,0.0,0.1322869955,0.2,0.0
1.4.5.2.2.4-11,SFA-BA58,"BA5 - Amendment (Minor) for Temporary works for Shaft A, Pump Station, Diversion Culvert (Wall Only){4b4-2}[WITHDRAWN]",7112,"CCGTD1_IPS",TT_Task,"58683",-,-,-,100,TK_Complete,03/11/2017,16/11/2017,01/01/2018,11/12/2017,"SFAt1BA8 FS","SFAt1BA8","IBC10010 FS,SFA10020 FF,PPS10015 FS,SFA_BA58 SS","IBC10010,SFA10020,PPS10015,SFA_BA58",118,156,126,160,27,36,29,37,14,,"CCGT D1_Integrated Programme Schedule;CIVILS;GENERAL & PRELIMINARIES;Statutory Submissions & Approval;BD Submissions (Contractor's Design);Cooling Water System",1,4,0.0000123384,0.0140386572,0.0012207528,59,1.0,0.000159564,0.0068493151,0.0123076923,0.018625,0.0360313316,0.0038610039,0.1322869955,1.0,0.0320936187
1.4.5.2.2.4-12,SFA_BA58,"BA5 - Amendment (Major) for Temporary works for Shaft A, Pump Station, Diversion Culvert (Excav & ELS) {4b5}[WITHDRAWN]",7112,"CCGTD1_IPS",TT_Task,"58683",-,-,-,100,TK_Complete,30/11/2017,05/12/2017,28/02/2018,11/12/2017,"SFA-BA58 SS","SFA-BA58","IBC10140 FS,SFA10050 FS","IBC10140,SFA10050",122,159,135,160,28,37,31,37,15,,"CCGT D1_Integrated Programme Schedule;CIVILS;GENERAL & PRELIMINARIES;Statutory Submissions & Approval;BD Submissions (Contractor's Design);Cooling Water System",1,2,0.0000040162,0.0052899288,0.0014242116,90,1.0,0.0001313457,0.0068493151,0.0061538462,0.0060625,0.0135770235,0.0045045045,0.201793722,1.0,0.0205312506
1.4.5.2.2.4-13,SFE-BA58,"BA5 & BA8 - Amendment (Major) for Temp.works for Shaft E & Discharge Culvert (alt sheet pile)[WITHDRAWN]{4b2-1}",7112,"CCGTD1_IPS",TT_Task,"58683",-,-,-,100,TK_Complete,04/11/2017,21/07/2017,03/12/2017,08/09/2017,"SFEt1BA5 FS,SFEtSA10 FS","SFEt1BA5,SFEtSA10","DBC10010 FS","DBC10010",118,140,122,147,27,32,28,34,14,,"CCGT D1_Integrated Programme Schedule;CIVILS;GENERAL & PRELIMINARIES;Statutory Submissions & Approval;BD Submissions (Contractor's Design);Cooling Water System",2,1,0.0000186111,0.0160732452,0.0014242116,29,0.0,0.0003228809,0.0136986301,0.0030769231,0.02809375,0.0412532637,0.0045045045,0.0650224215,0.0,0.0990124139
1.4.5.2.2.4-14,SFF-BA58,"BA5 & BA8 - Amendment to Zone A Sheet Pile Alternative [WITHDRA WN] {4b1i}",7112,"CCGTD1_IPS",TT_Task,"58683",-,-,-,100,TK_Complete,22/06/2017,23/06/2017,21/07/2017,07/07/2017,"SFFtSA10 FF","SFFtSA10","SFFtSA10a FS,SFFtSA10b FS","SFFtSA10a,SFFtSA10b",99,136,103,138,23,31,24,32,7,,"CCGT D1_Integrated Programme Schedule;CIVILS;GENERAL & PRELIMINARIES;Statutory Submissions & Approval;BD Submissions (Contractor's Design);Cooling Water System",1,2,0.0000244283,0.0539165819,0.001017294,29,1.0,0.0002259556,0.0068493151,0.0061538462,0.036875,0.138381201,0.0032175032,0.0650224215,1.0,0.0592974484
1.4.5.2.2.4-15,SFF_BA58,"BA5 - Submission of Zone B Open Cut Alternative {4b1-alt B} [APPROVED]",7112,"CCGTD1_IPS",TT_Task,"58683",-,-,-,100,TK_Complete,22/06/2017,22/06/2017,19/09/2017,18/08/2017,"SFFtSA20 FS","SFFtSA20","SFF_BA58a FS","SFF_BA58a",99,135,111,144,23,31,26,33,7,,"CCGT D1_Integrated Programme Schedule;CIVILS;GENERAL & PRELIMINARIES;Statutory Submissions & Approval;BD Submissions (Contractor's Design);Cooling Water System",1,1,0.0000001449,0.0002034588,0.001017294,89,1.0,0.0002259556,0.0068493151,0.0030769231,0.00021875,0.0005221932,0.0032175032,0.1995515695,1.0,0.0592974484
1.4.5.2.2.4-16,SFF-BA58b,"BA8 - Consnet for Zone A Sheet Pile Alternative {4b1-alt A-1}",7112,"CCGTD1_IPS",TT_Task,"58683",-,-,-,100,TK_Complete,22/06/2017,29/08/2017,19/07/2017,25/09/2017,"SFFtSA10b FS","SFFtSA10b","DPT10020 FS","DPT10020",99,145,103,149,23,33,24,34,7,,"CCGT D1_Integrated Programme Schedule;CIVILS;GENERAL & PRELIMINARIES;Statutory Submissions & Approval;BD Submissions (Contractor's Design);Cooling Water System",1,1,0.000010144,0.01017294,0.0014242116,27,1.0,0.0002323393,0.0068493151,0.0030769231,0.0153125,0.0261096606,0.0045045045,0.0605381166,1.0,0.0619131867
1.4.5.2.2.4-17,SFE_BA58,"BA5 & BA8 - Amendment (Type II) for Temp.works for Shaft E & Discharge Culvert (Wall only){4b2-1(r)}",7112,"CCGTD1_IPS",TT_Task,"58683",-,-,-,100,TK_Complete,06/10/2017,06/10/2017,04/12/2017,03/11/2017,"","","DBC10010 FS","DBC10010",114,151,122,155,26,35,28,36,12,,"CCGT D1_Integrated Programme Schedule;CIVILS;GENERAL & PRELIMINARIES;Statutory Submissions & Approval;BD Submissions (Contractor's Design);Cooling Water System",0,1,0.0,0.0160732452,0.0,59,1.0,0.0000812387,0.0,0.0030769231,0.0,0.0412532637,0.0,0.1322869955,1.0,0.0
1.4.5.2.2.4-18,SFF_BA58a,"BA8 - Consent for Zone B Open Cut Alternative {4b1-alt B}",7112,"CCGTD1_IPS",TT_Task,"58683",-,-,-,100,TK_Complete,26/06/2018,04/05/2018,23/07/2018,26/06/2018,"SFF_BA58 FS,DPT20010 FS,DPT20030 FS","SFF_BA58,DPT20010,DPT20030","EV020010 FS","EV020010",151,181,155,188,35,42,36,44,31,,"CCGT D1_Integrated Programme Schedule;CIVILS;GENERAL & PRELIMINARIES;Statutory Submissions & Approval;BD Submissions (Contractor's Design);Cooling Water System",3,0,0.0,0.0,0.0036622584,27,0.0,0.0006547374,0.0205479452,0.0,0.0,0.0,0.0115830116,0.0605381166,0.0,0.2349900041
1.4.5.2.2.4-19,SFE_BA58a,"BA5 - Amendment (pipe jacking) for Temp.works for Shaft E & Discharge Culvert (Excav. & ELS){4b2-2) [WITHDRAWN]",7112,"CCGTD1_IPS",TT_Task,"58683",-,-,-,100,TK_Complete,26/02/2018,14/02/2018,27/04/2018,23/03/2018,"","","","",134,169,143,175,31,39,33,40,19,,"CCGT D1_Integrated Programme Schedule;CIVILS;GENERAL & PRELIMINARIES;Statutory Submissions & Approval;BD Submissions (Contractor's Design);Cooling Water System",0,0,0.0,0.0,0.0,60,1.0,0.0000812387,0.0,0.0,0.0,0.0,0.0,0.134529148,1.0,0.0
1.4.5.2.2.4-20,SFA-BA58a1,"BA5 - Amendment (Minor) for Temp.works for Shaft A, Pump Sttn, Div. Culvert (Wall Only){4b4-2(r2)}",7112,"CCGTD1_IPS",TT_Task,"58683",-,-,-,100,TK_Complete,27/11/2017,02/01/2018,25/12/2017,30/01/2018,"SFA-BA58a FS","SFA-BA58a","SFA-BA58b FF","SFA-BA58b",121,163,125,167,28,38,29,39,15,,"CCGT D1_Integrated Programme Schedule;CIVILS;GENERAL & PRELIMINARIES;Statutory Submissions & Approval;BD Submissions (Contractor's Design);Cooling Water System",1,1,0.0000114689,0.0140386572,0.0012207528,28,1.0,0.0002741364,0.0068493151,0.0030769231,0.0173125,0.0360313316,0.0038610039,0.0627802691,1.0,0.0790394564
1.4.5.2.2.4-21,SFD_BA05a,"BA5 - Resubmission of Temp works for Shaft D (Excav & ELS) {4b3(r2)-1}",7112,"CCGTD1_IPS",TT_Task,"58683",-,-,-,100,TK_Complete,23/04/2018,13/03/2018,21/06/2018,15/05/2018,"","","SFDt1BA8a FS","SFDt1BA8a",142,173,151,182,33,40,35,42,25,,"CCGT D1_Integrated Programme Schedule;CIVILS;GENERAL & PRELIMINARIES;Statutory Submissions & Approval;BD Submissions (Contractor's Design);Cooling Water System",0,1,0.0,0.0008138352,0.0,59,0.6,0.0000812387,0.0,0.0030769231,0.0,0.0020887728,0.0,0.1322869955,0.6,0.0
1.4.5.2.2.4-22,SFDt1BA8a,"BA8 - Consent  for Shaft D (Excav & ELS) {4b3a(r2)-1}[WITHDRAWN]",7112,"CCGTD1_IPS",TT_Task,"58683",-,-,-,100,TK_Complete,14/06/2018,21/05/2018,11/07/2018,18/06/2018,"SFD_BA05a FS","SFD_BA05a","EV011140 FS,EV021320 FS","EV011140,EV021320",150,183,154,187,35,42,35,43,30,,"CCGT D1_Integrated Programme Schedule;CIVILS;GENERAL & PRELIMINARIES;Statutory Submissions & Approval;BD Submissions (Contractor's Design);Cooling Water System",1,2,0.0000001242,0.0006103764,0.0002034588,27,0.8,0.0001503957,0.0068493151,0.0061538462,0.0001875,0.0015665796,0.0006435006,0.0605381166,0.8,0.0283369572
1.4.5.2.2.4-23,SFF-BA58b1,"BA5 & BA8 - Shaft F (Type II) Amendment - Delink Effluent Pit {4b1-4} [APPROVED]",7112,"CCGTD1_IPS",TT_Task,"58683",-,-,-,100,TK_Complete,23/04/2018,08/03/2018,22/05/2018,10/04/2018,"","","SFF-BA58c FS,SFF-BA58b2 FS","SFF-BA58c,SFF-BA58b2",142,172,146,177,33,40,34,41,25,,"CCGT D1_Integrated Programme Schedule;CIVILS;GENERAL & PRELIMINARIES;Statutory Submissions & Approval;BD Submissions (Contractor's Design);Cooling Water System",0,2,0.0,0.0069175992,0.0,29,0.6,0.0000812387,0.0,0.0061538462,0.0,0.0177545692,0.0,0.0650224215,0.6,0.0
1.4.5.2.2.4-24,SFF-BA58b2,"BA5 & BA8 - Shaft F (Type II) Amendment - Increase AAA Level and Pumping Test {4b1-5} [WITHDRAWAL]",7112,"CCGTD1_IPS",TT_Task,"58683",-,-,-,100,TK_Complete,27/05/2018,26/04/2018,23/06/2018,18/05/2018,"SFF-BA58b1 FS","SFF-BA58b1","SFF-BA58c FS,SFF10045 FS","SFF-BA58c,SFF10045",147,179,151,183,34,41,35,42,29,,"CCGT D1_Integrated Programme Schedule;CIVILS;GENERAL & PRELIMINARIES;Statutory Submissions & Approval;BD Submissions (Contractor's Design);Cooling Water System",1,2,0.000000207,0.0067141404,0.0002034588,27,1.0,0.0001029508,0.0068493151,0.0061538462,0.0003125,0.017232376,0.0006435006,0.0605381166,1.0,0.0088964866
1.4.5.2.2.4-25,SFA_BA58a1,"BA5 - Amendment (Minor) for Temp.works for Shaft A, Pump Station, Diversion Culvert (Excav & ELS) {4b4-3(r1)} [APPROVED]",7112,"CCGTD1_IPS",TT_Task,"58683",-,-,-,100,TK_Complete,12/03/2018,23/03/2018,10/04/2018,24/04/2018,"SFA_BA58a FS","SFA_BA58a","SFA_BA58b FS","SFA_BA58b",136,175,140,179,31,40,32,41,22,,"CCGT D1_Integrated Programme Schedule;CIVILS;GENERAL & PRELIMINARIES;Statutory Submissions & Approval;BD Submissions (Contractor's Design);Cooling Water System",1,1,0.0000163959,0.0268565615,0.0006103764,29,0.4,0.0001540001,0.0068493151,0.0030769231,0.02475,0.0689295039,0.0019305019,0.0650224215,0.4,0.0298138239
1.4.5.2.2.4-26,SFF-BA58b3,"BA5 & BA8 - Shaft F (Type II) Amendment - Increase AAA Level and Pumping Test {4b1-5(r1)}",7112,"CCGTD1_IPS",TT_Task,"58683",-,-,-,100,TK_Complete,27/05/2018,18/05/2018,25/06/2018,22/06/2018,"","","EV022010 FS,EV022006 FS,EV030010 FS","EV022010,EV022006,EV030010",147,183,151,188,34,42,35,43,29,,"CCGT D1_Integrated Programme Schedule;CIVILS;GENERAL & PRELIMINARIES;Statutory Submissions & Approval;BD Submissions (Contractor's Design);Cooling Water System",0,3,0.0,0.0034587996,0.0,29,0.4,0.0000812387,0.0,0.0092307692,0.0,0.0088772846,0.0,0.0650224215,0.4,0.0
1.4.5.2.2.4-27,SFE_BA58a1,"BA5 - Amendment (pipe jacking) for Temp.works for Shaft E & Discharge Culvert (Excav. & ELS){4b2-2(r1)} {APPROVED]",7112,"CCGTD1_IPS",TT_Task,"58683",-,-,-,100,TK_Complete,26/02/2018,23/03/2018,27/03/2018,24/04/2018,"","","SFE_BA58b FS","SFE_BA58b",134,175,138,179,31,40,32,41,19,,"CCGT D1_Integrated Programme Schedule;CIVILS;GENERAL & PRELIMINARIES;Statutory Submissions & Approval;BD Submissions (Contractor's Design);Cooling Water System",0,1,0.0,0.0227873856,0.0,29,0.8,0.0000812387,0.0,0.0030769231,0.0,0.0584856397,0.0,0.0650224215,0.8,0.0
1.4.5.2.3,58669,"BD Submissions (Engineer's Design)",7112,"CCGTD1_IPS",WBS,"58668",,,,100,Complete,31/03/2017,11/04/2017,01/01/2020,,,,,,87,125,231,,20,29,53,,,,"CCGT D1_Integrated Programme Schedule;CIVILS;GENERAL & PRELIMINARIES;Statutory Submissions & Approval"
1.4.5.2.3.1,58679,"Power Island Area",7112,"CCGTD1_IPS",WBS,"58669",,,,100,Complete,31/03/2017,19/04/2017,02/05/2018,14/04/2018,,,,,87,126,144,178,20,29,33,41,,,"CCGT D1_Integrated Programme Schedule;CIVILS;GENERAL & PRELIMINARIES;Statutory Submissions & Approval;BD Submissions (Engineer's Design)"
1.4.5.2.3.1.1,58681,"Temporary Works",7112,"CCGTD1_IPS",WBS,"58679",,,,100,Complete,21/05/2017,19/05/2017,25/06/2017,14/07/2017,,,,,94,131,99,139,22,30,23,32,,,"CCGT D1_Integrated Programme Schedule;CIVILS;GENERAL & PRELIMINARIES;Statutory Submissions & Approval;BD Submissions (Engineer's Design);Power Island Area"
1.4.5.2.3.1.1-1,POWe1BA5,"BA5 - (1st) BD Approval to ELS Plans for substructures {7c2}",7112,"CCGTD1_IPS",TT_FinMile,"58681",-,-,-,100,TK_Complete,21/05/2017,19/05/2017,21/05/2017,19/05/2017,"","","POWe1BA8 FF","POWe1BA8",94,131,94,131,22,30,22,30,5,,"CCGT D1_Integrated Programme Schedule;CIVILS;GENERAL & PRELIMINARIES;Statutory Submissions & Approval;BD Submissions (Engineer's Design);Power Island Area;Temporary Works",0,1,0.0,0.0433367243,0.0,0,1.0,0.0000812387,0.0,0.0030769231,0.0,0.111227154,0.0,0.0,1.0,0.0
1.4.5.2.3.1.1-2,POWe1BA8,"BA8 - (1st) BD Consent to ELS Plans for substructures {7c2}",7112,"CCGTD1_IPS",TT_FinMile,"58681",-,-,-,100,TK_Complete,25/06/2017,14/07/2017,25/06/2017,14/07/2017,"POWe1BA5 FF,GENSUB06 FS","POWe1BA5,GENSUB06","POW_BA58 FS","POW_BA58",99,139,99,139,23,32,23,32,7,,"CCGT D1_Integrated Programme Schedule;CIVILS;GENERAL & PRELIMINARIES;Statutory Submissions & Approval;BD Submissions (Engineer's Design);Power Island Area;Temporary Works",2,1,0.0000313911,0.0431332655,0.001017294,0,1.0,0.0000812387,0.0136986301,0.0030769231,0.0473854167,0.1107049608,0.0032175032,0.0,1.0,0.0
1.4.5.2.3.1.2,58680,"Permanent Works",7112,"CCGTD1_IPS",WBS,"58679",,,,100,Complete,31/03/2017,19/04/2017,02/05/2018,14/04/2018,,,,,87,126,144,178,20,29,33,41,,,"CCGT D1_Integrated Programme Schedule;CIVILS;GENERAL & PRELIMINARIES;Statutory Submissions & Approval;BD Submissions (Engineer's Design);Power Island Area"
1.4.5.2.3.1.2-1,POW-1BA5,"BA5 - (1st) BD Approval to GBP Amendment for Turbine Hall and HRSG incl' outdoor equipment structures {7a1}",7112,"CCGTD1_IPS",TT_FinMile,"58680",-,-,-,100,TK_Complete,15/08/2017,04/05/2017,15/08/2017,04/05/2017,"","","","",106,128,106,128,24,30,24,30,10,,"CCGT D1_Integrated Programme Schedule;CIVILS;GENERAL & PRELIMINARIES;Statutory Submissions & Approval;BD Submissions (Engineer's Design);Power Island Area;Permanent Works",0,0,0.0,0.0,0.0,0,1.0,0.0000812387,0.0,0.0,0.0,0.0,0.0,0.0,1.0,0.0
1.4.5.2.3.1.2-2,SBTH2BA5,"BA5 - Approval to 1st  Amendment (Major) for pile caps and tie beams within Turbine Hall {7b1}",7112,"CCGTD1_IPS",TT_FinMile,"58680",-,-,-,100,TK_Complete,31/03/2017,19/04/2017,31/03/2017,19/04/2017,"","","SBTH2BA8 FF","SBTH2BA8",87,126,87,126,20,29,20,29,3,,"CCGT D1_Integrated Programme Schedule;CIVILS;GENERAL & PRELIMINARIES;Statutory Submissions & Approval;BD Submissions (Engineer's Design);Power Island Area;Permanent Works",0,1,0.0,0.0002034588,0.0,0,1.0,0.0000812387,0.0,0.0030769231,0.0,0.0005221932,0.0,0.0,1.0,0.0
1.4.5.2.3.1.2-3,SBTH2BA8,"BA8 - Consent to 1st Amendment (Major) for pile caps and tie beams within Turbine Hall {7b1}",7112,"CCGTD1_IPS",TT_FinMile,"58680",-,-,-,100,TK_Complete,02/07/2017,27/06/2017,02/07/2017,27/06/2017,"GENSUB06 FS,SBTH2BA5 FF","GENSUB06,SBTH2BA5","","",100,136,100,136,23,31,23,31,8,,"CCGT D1_Integrated Programme Schedule;CIVILS;GENERAL & PRELIMINARIES;Statutory Submissions & Approval;BD Submissions (Engineer's Design);Power Island Area;Permanent Works",2,0,0.0,0.0,0.001017294,0,1.0,0.0000812387,0.0136986301,0.0,0.0,0.0,0.0032175032,0.0,1.0,0.0
1.4.5.2.3.1.2-4,SBHS2BA5,"BA5 - Approval to 1st Amendment (Major) for substructures of HRSG and Stack {7b1}",7112,"CCGTD1_IPS",TT_FinMile,"58680",-,-,-,100,TK_Complete,31/03/2017,19/04/2017,31/03/2017,19/04/2017,"","","SBHS2BA8 FF","SBHS2BA8",87,126,87,126,20,29,20,29,3,,"CCGT D1_Integrated Programme Schedule;CIVILS;GENERAL & PRELIMINARIES;Statutory Submissions & Approval;BD Submissions (Engineer's Design);Power Island Area;Permanent Works",0,1,0.0,0.0002034588,0.0,0,1.0,0.0000812387,0.0,0.0030769231,0.0,0.0005221932,0.0,0.0,1.0,0.0
1.4.5.2.3.1.2-5,SBHS2BA8,"BA8 - Consent to 1st Amendment for (Major) substructures of HRSG and Stack {7b1}",7112,"CCGTD1_IPS",TT_FinMile,"58680",-,-,-,100,TK_Complete,02/07/2017,27/06/2017,02/07/2017,27/06/2017,"SBHS2BA5 FF,GENSUB06 FS","SBHS2BA5,GENSUB06","","",100,136,100,136,23,31,23,31,8,,"CCGT D1_Integrated Programme Schedule;CIVILS;GENERAL & PRELIMINARIES;Statutory Submissions & Approval;BD Submissions (Engineer's Design);Power Island Area;Permanent Works",2,0,0.0,0.0,0.001017294,0,1.0,0.0000812387,0.0136986301,0.0,0.0,0.0,0.0032175032,0.0,1.0,0.0
1.4.5.2.3.1.2-6,SPTH2BA5,"BA5 - Approval to (1st) Amendment for superstructures for Turbine Hall {7d1}",7112,"CCGTD1_IPS",TT_Task,"58680",-,-,-,100,TK_Complete,26/05/2017,25/04/2017,24/06/2017,24/05/2017,"","","SPTH3BA5XX FF","SPTH3BA5XX",95,127,99,131,22,29,23,30,5,,"CCGT D1_Integrated Programme Schedule;CIVILS;GENERAL & PRELIMINARIES;Statutory Submissions & Approval;BD Submissions (Engineer's Design);Power Island Area;Permanent Works",0,1,0.0,0.0002034588,0.0,29,1.0,0.0000812387,0.0,0.0030769231,0.0,0.0005221932,0.0,0.0650224215,1.0,0.0
1.4.5.2.3.1.2-7,SPSB2BA5,"BA5 - Approval to (2nd) Amendment for superstructures for Turbine Hall {7d2}",7112,"CCGTD1_IPS",TT_Task,"58680",-,-,-,100,TK_Complete,15/06/2017,19/06/2017,14/07/2017,18/07/2017,"","","SPTH3BA8 FS","SPTH3BA8",98,135,102,139,22,31,23,32,7,,"CCGT D1_Integrated Programme Schedule;CIVILS;GENERAL & PRELIMINARIES;Statutory Submissions & Approval;BD Submissions (Engineer's Design);Power Island Area;Permanent Works",0,1,0.0,0.0002034588,0.0,29,1.0,0.0000812387,0.0,0.0030769231,0.0,0.0005221932,0.0,0.0650224215,1.0,0.0
1.4.5.2.3.1.2-8,THCL1BA5,"BA5 - (1st) BD Approval to Cladding Plan for Turbine Hall (incl' Switchgear Block) [DISAPPROVED] {7e}",7112,"CCGTD1_IPS",TT_Task,"58680",-,-,-,100,TK_Complete,07/08/2017,09/05/2017,05/10/2017,04/07/2017,"","","THCL2BA5 FS","THCL2BA5",105,129,114,137,24,30,26,32,9,,"CCGT D1_Integrated Programme Schedule;CIVILS;GENERAL & PRELIMINARIES;Statutory Submissions & Approval;BD Submissions (Engineer's Design);Power Island Area;Permanent Works",0,1,0.0,0.0002034588,0.0,59,1.0,0.0000812387,0.0,0.0030769231,0.0,0.0005221932,0.0,0.1322869955,1.0,0.0
1.4.5.2.3.1.2-9,SBOE1BA5,"BA5 - BD Approval to Structural Plan (Package 1) for Outdoor Equipment foundations and plinths [WITHDRAWN] {7f}",7112,"CCGTD1_IPS",TT_FinMile,"58680",-,-,-,100,TK_Complete,26/05/2017,19/05/2017,26/05/2017,19/05/2017,"","","","",95,131,95,131,22,30,22,30,5,,"CCGT D1_Integrated Programme Schedule;CIVILS;GENERAL & PRELIMINARIES;Statutory Submissions & Approval;BD Submissions (Engineer's Design);Power Island Area;Permanent Works",0,0,0.0,0.0,0.0,0,1.0,0.0000812387,0.0,0.0,0.0,0.0,0.0,0.0,1.0,0.0
1.4.5.2.3.1.2-10,SPHS1BA5XX,"BA5 - (1st) BD Approval to Structural Plan for superstructures of HRSG, Stack, Stair Towers, Rack & Platforms",7112,"CCGTD1_IPS",TT_FinMile,"58680",-,-,-,100,TK_Complete,02/07/2017,30/06/2017,02/07/2017,30/06/2017,"","","","",100,137,100,137,23,31,23,31,8,,"CCGT D1_Integrated Programme Schedule;CIVILS;GENERAL & PRELIMINARIES;Statutory Submissions & Approval;BD Submissions (Engineer's Design);Power Island Area;Permanent Works",0,0,0.0,0.0,0.0,0,1.0,0.0000812387,0.0,0.0,0.0,0.0,0.0,0.0,1.0,0.0
1.4.5.2.3.1.2-11,SPTHaBA5XX,"BA5 - (1st) BD Approval to Structural Plan for maintenance platforms and pipe racks within Turbine Hall",7112,"CCGTD1_IPS",TT_FinMile,"58680",-,-,-,100,TK_Complete,14/07/2017,14/07/2017,14/07/2017,14/07/2017,"","","","",102,139,102,139,23,32,23,32,9,,"CCGT D1_Integrated Programme Schedule;CIVILS;GENERAL & PRELIMINARIES;Statutory Submissions & Approval;BD Submissions (Engineer's Design);Power Island Area;Permanent Works",0,0,0.0,0.0,0.0,0,1.0,0.0000812387,0.0,0.0,0.0,0.0,0.0,0.0,1.0,0.0
1.4.5.2.3.1.2-12,POWd1BA5,"BA5 - (1st) BD Approval to Drainage Plans for Power Island Areas {8a}",7112,"CCGTD1_IPS",TT_Task,"58680",-,-,-,100,TK_Complete,10/07/2017,10/05/2017,30/08/2017,30/06/2017,"","","POWd1BA8 FS","POWd1BA8",101,129,109,137,23,30,25,31,9,,"CCGT D1_Integrated Programme Schedule;CIVILS;GENERAL & PRELIMINARIES;Statutory Submissions & Approval;BD Submissions (Engineer's Design);Power Island Area;Permanent Works",0,1,0.0,0.0002034588,0.0,51,1.0,0.0000812387,0.0,0.0030769231,0.0,0.0005221932,0.0,0.1143497758,1.0,0.0
1.4.5.2.3.1.2-13,POWd1BA8,"BA8 - (1st) BD Consent to Drainage Plans for Power Island Areas {8a}",7112,"CCGTD1_IPS",TT_Task,"58680",-,-,-,100,TK_Complete,07/08/2017,01/08/2017,05/09/2017,31/08/2017,"POWd1BA5 FS,GENSUB06 FS","POWd1BA5,GENSUB06","","",105,141,109,145,24,33,25,34,9,,"CCGT D1_Integrated Programme Schedule;CIVILS;GENERAL & PRELIMINARIES;Statutory Submissions & Approval;BD Submissions (Engineer's Design);Power Island Area;Permanent Works",2,0,0.0,0.0,0.001017294,29,0.8,0.0001580619,0.0136986301,0.0,0.0,0.0,0.0032175032,0.0650224215,0.8,0.0314781678
1.4.5.2.3.1.2-14,SBTH3BA5,"BA5 - Approval to 2nd Amendment (Type II) for pile caps and tie beams within Turbine Hall {7b2}",7112,"CCGTD1_IPS",TT_Task,"58680",-,-,-,100,TK_Complete,07/08/2017,30/06/2017,06/09/2017,26/07/2017,"","","SBTH3BA8 FS","SBTH3BA8",105,137,110,140,24,31,25,32,9,,"CCGT D1_Integrated Programme Schedule;CIVILS;GENERAL & PRELIMINARIES;Statutory Submissions & Approval;BD Submissions (Engineer's Design);Power Island Area;Permanent Works",0,1,0.0,0.0002034588,0.0,30,1.0,0.0000812387,0.0,0.0030769231,0.0,0.0005221932,0.0,0.067264574,1.0,0.0
1.4.5.2.3.1.2-15,SBTH3BA8,"BA8 - Consent to 2nd Amendment (Type II) for pile caps and tie beams within Turbine Hall {7b2}",7112,"CCGTD1_IPS",TT_Task,"58680",-,-,-,100,TK_Complete,07/08/2017,30/06/2017,05/09/2017,26/07/2017,"SBTH3BA5 FS,GENSUB06 FS","SBTH3BA5,GENSUB06","","",105,137,109,140,24,31,25,32,9,,"CCGT D1_Integrated Programme Schedule;CIVILS;GENERAL & PRELIMINARIES;Statutory Submissions & Approval;BD Submissions (Engineer's Design);Power Island Area;Permanent Works",2,0,0.0,0.0,0.001017294,29,1.0,0.0001580619,0.0136986301,0.0,0.0,0.0,0.0032175032,0.0650224215,1.0,0.0314781678
1.4.5.2.3.1.2-16,SBHS3BA5,"BA5 - Approval to 2nd Amendment (Type II) for substructures of HRSG and Stack {7b2}",7112,"CCGTD1_IPS",TT_Task,"58680",-,-,-,100,TK_Complete,07/08/2017,30/06/2017,06/09/2017,26/07/2017,"","","SBHS3BA8 FS","SBHS3BA8",105,137,110,140,24,31,25,32,9,,"CCGT D1_Integrated Programme Schedule;CIVILS;GENERAL & PRELIMINARIES;Statutory Submissions & Approval;BD Submissions (Engineer's Design);Power Island Area;Permanent Works",0,1,0.0,0.0002034588,0.0,30,1.0,0.0000812387,0.0,0.0030769231,0.0,0.0005221932,0.0,0.067264574,1.0,0.0
1.4.5.2.3.1.2-17,SBHS3BA8,"BA8 - Consent to 2nd Amendment (Type II) for substructures of HRSG and Stack {7b2}",7112,"CCGTD1_IPS",TT_Task,"58680",-,-,-,100,TK_Complete,06/09/2017,30/06/2017,05/10/2017,26/07/2017,"SBHS3BA5 FS,GENSUB06 FS","SBHS3BA5,GENSUB06","","",110,137,114,140,25,31,26,32,11,,"CCGT D1_Integrated Programme Schedule;CIVILS;GENERAL & PRELIMINARIES;Statutory Submissions & Approval;BD Submissions (Engineer's Design);Power Island Area;Permanent Works",2,0,0.0,0.0,0.001017294,29,1.0,0.0001580619,0.0136986301,0.0,0.0,0.0,0.0032175032,0.0650224215,1.0,0.0314781678
1.4.5.2.3.1.2-18,THCL2BA5,"BA5 - Approval to Resubmission of Cladding Plan for Turbine Hall (incl' Switchgear Block) [WITHDRWN] {7e(r1)}",7112,"CCGTD1_IPS",TT_Task,"58680",-,-,-,100,TK_Complete,11/08/2017,15/08/2017,10/10/2017,12/10/2017,"THCL1BA5 FS","THCL1BA5","","",106,143,114,151,24,33,26,35,10,,"CCGT D1_Integrated Programme Schedule;CIVILS;GENERAL & PRELIMINARIES;Statutory Submissions & Approval;BD Submissions (Engineer's Design);Power Island Area;Permanent Works",1,0,0.0,0.0,0.0002034588,60,1.0,0.0001503957,0.0068493151,0.0,0.0,0.0,0.0006435006,0.134529148,1.0,0.0283369572
1.4.5.2.3.1.2-19,THCL2BA8,"BA8 - (1st) BD Consent to Cladding Plan for Turbine Hall (incl' Switchgear Block) {7e(r2)} AD-TBC",7112,"CCGTD1_IPS",TT_Task,"58680",-,-,-,100,TK_Complete,16/03/2018,16/03/2018,14/04/2018,14/04/2018,"GENSUB06 FS,THCL2BA5a FS,THCL2BA5b FS","GENSUB06,THCL2BA5a,THCL2BA5b","THRF0510 FS","THRF0510",137,174,141,178,32,40,33,41,22,,"CCGT D1_Integrated Programme Schedule;CIVILS;GENERAL & PRELIMINARIES;Statutory Submissions & Approval;BD Submissions (Engineer's Design);Power Island Area;Permanent Works",3,1,0.0000011593,0.0016276704,0.0022380468,29,1.0,0.0003186961,0.0205479452,0.0030769231,0.00175,0.0041775457,0.0070785071,0.0650224215,1.0,0.0972976923
1.4.5.2.3.1.2-20,SBOE2BA5,"BA5 - Approval to Resubmission of Structural Plan (Package 1) for Outdoor Equipment foundations and plinths {7f(r)}",7112,"CCGTD1_IPS",TT_Task,"58680",-,-,-,100,TK_Complete,07/08/2017,31/07/2017,06/10/2017,27/09/2017,"","","SBOE2BA8 FS","SBOE2BA8",105,141,114,149,24,33,26,34,9,,"CCGT D1_Integrated Programme Schedule;CIVILS;GENERAL & PRELIMINARIES;Statutory Submissions & Approval;BD Submissions (Engineer's Design);Power Island Area;Permanent Works",0,1,0.0,0.0148524924,0.0,60,1.0,0.0000812387,0.0,0.0030769231,0.0,0.0381201044,0.0,0.134529148,1.0,0.0
1.4.5.2.3.1.2-21,SBOE2BA8,"BA8 - (1st) BD Consent to Structural Plan (Package 1) for Outdoor Equipment foundations and plinths {7f(r)}",7112,"CCGTD1_IPS",TT_Task,"58680",-,-,-,100,TK_Complete,30/09/2017,08/02/2018,29/10/2017,07/03/2018,"SBOE2BA5 FS,GENSUB06 FS","SBOE2BA5,GENSUB06","SBOE3BA5 FS,PR010010 FS,BBDP0080 FS,FWPT0010 FS,APTX0010 FS,RWPR0040 FS,GFFE0010 FS,CCWS0010 FS,FTP10010 FS,FTP20010 FS,FTP30010 FS","SBOE3BA5,PR010010,BBDP0080,FWPT0010,APTX0010,RWPR0040,GFFE0010,CCWS0010,FTP10010,FTP20010,FTP30010",113,168,117,172,26,39,27,40,12,,"CCGT D1_Integrated Programme Schedule;CIVILS;GENERAL & PRELIMINARIES;Statutory Submissions & Approval;BD Submissions (Engineer's Design);Power Island Area;Permanent Works",2,11,0.0000144086,0.0146490336,0.001017294,29,1.0,0.0001580619,0.0136986301,0.0338461538,0.02175,0.0375979112,0.0032175032,0.0650224215,1.0,0.0314781678
1.4.5.2.3.1.2-22,SBOE3BA5,"BA5 - BD Approval to Structural Plan (Package 2) for Outdoor Equipment foundations and plinths {7g}",7112,"CCGTD1_IPS",TT_Task,"58680",-,-,-,100,TK_Complete,30/10/2017,30/10/2017,29/12/2017,29/12/2017,"SBOE2BA8 FS","SBOE2BA8","SBOE3BA8 FS","SBOE3BA8",117,154,126,163,27,36,29,38,13,,"CCGT D1_Integrated Programme Schedule;CIVILS;GENERAL & PRELIMINARIES;Statutory Submissions & Approval;BD Submissions (Engineer's Design);Power Island Area;Permanent Works",1,1,0.0000002484,0.0144455748,0.0012207528,60,1.0,0.0001098626,0.0068493151,0.0030769231,0.000375,0.037075718,0.0038610039,0.134529148,1.0,0.0117285887
1.4.5.2.3.1.2-23,SBOE3BA8,"BA8 - BD Consent to Structural Plan (Package 2) for Outdoor Equipment foundations and plinths {7g}",7112,"CCGTD1_IPS",TT_Task,"58680",-,-,-,100,TK_Complete,03/04/2018,08/02/2018,02/05/2018,07/03/2018,"SBOE3BA5 FS","SBOE3BA5","APTX0010 FF,BBDP0080 FF,CCWS0010 FF,FTP10010 FF,FTP20010 FF,FTP30010 FF,FWPT0010 FF,GFFE0010 FF,PR010010 FF,RWPR0040 FF,FWPT0020 FF","APTX0010,BBDP0080,CCWS0010,FTP10010,FTP20010,FTP30010,FWPT0010,GFFE0010,PR010010,RWPR0040,FWPT0020",139,168,144,172,32,39,33,40,24,,"CCGT D1_Integrated Programme Schedule;CIVILS;GENERAL & PRELIMINARIES;Statutory Submissions & Approval;BD Submissions (Engineer's Design);Power Island Area;Permanent Works",1,11,0.0000028983,0.014242116,0.0014242116,29,1.0,0.0001747671,0.0068493151,0.0338461538,0.004375,0.0365535248,0.0045045045,0.0650224215,1.0,0.0383230893
1.4.5.2.3.1.2-24,SPTH3BA5XX,"BA5 - Approval to (Minor) Amendment for superstructures for Turbine Hall {7d1}",7112,"CCGTD1_IPS",TT_FinMile,"58680",-,-,-,100,TK_Complete,02/07/2017,01/07/2017,02/07/2017,01/07/2017,"SPTH2BA5 FF","SPTH2BA5","","",100,137,100,137,23,32,23,32,8,,"CCGT D1_Integrated Programme Schedule;CIVILS;GENERAL & PRELIMINARIES;Statutory Submissions & Approval;BD Submissions (Engineer's Design);Power Island Area;Permanent Works",1,0,0.0,0.0,0.0002034588,0,1.0,0.0000812387,0.0068493151,0.0,0.0,0.0,0.0006435006,0.0,1.0,0.0
1.4.5.2.3.1.2-25,SPTH3BA8,"BA8 - Consent to Amendment for superstructures for Turbine Hall {7d2}",7112,"CCGTD1_IPS",TT_Task,"58680",-,-,-,100,TK_Complete,07/08/2017,19/07/2017,05/09/2017,01/08/2017,"SPSB2BA5 FS","SPSB2BA5","","",105,139,109,141,24,32,25,33,9,,"CCGT D1_Integrated Programme Schedule;CIVILS;GENERAL & PRELIMINARIES;Statutory Submissions & Approval;BD Submissions (Engineer's Design);Power Island Area;Permanent Works",1,0,0.0,0.0,0.0002034588,29,1.0,0.0001503957,0.0068493151,0.0,0.0,0.0,0.0006435006,0.0650224215,1.0,0.0283369572
1.4.5.2.3.1.2-26,THCL2BA5a,"BA5 - Approval to Resubmission of Cladding Plan for Turbine Hall (incl' Switchgear Block) {7e(r2)}",7112,"CCGTD1_IPS",TT_Task,"58680",-,-,-,100,TK_Complete,11/08/2017,12/10/2017,10/10/2017,05/12/2017,"","","THCL2BA8 FS,PROMA030 FS","THCL2BA8,PROMA030",106,151,114,159,24,35,26,37,10,,"CCGT D1_Integrated Programme Schedule;CIVILS;GENERAL & PRELIMINARIES;Statutory Submissions & Approval;BD Submissions (Engineer's Design);Power Island Area;Permanent Works",0,2,0.0,0.0022380468,0.0,60,1.0,0.0000812387,0.0,0.0061538462,0.0,0.0057441253,0.0,0.134529148,1.0,0.0
1.4.5.2.3.1.2-27,THCL2BA5b,"BA5 - Approval to 1st Amendment of Cladding Plan for Turbine Hall (incl' Switchgear Block) {7e(r2)(i)}",7112,"CCGTD1_IPS",TT_Task,"58680",-,-,-,100,TK_Complete,11/08/2017,15/02/2018,10/10/2017,15/03/2018,"GENSUB16 FS","GENSUB16","THCL2BA8 FS","THCL2BA8",106,169,114,173,24,39,26,40,10,,"CCGT D1_Integrated Programme Schedule;CIVILS;GENERAL & PRELIMINARIES;Statutory Submissions & Approval;BD Submissions (Engineer's Design);Power Island Area;Permanent Works",1,1,0.000000207,0.0018311292,0.0014242116,60,1.0,0.0002392717,0.0068493151,0.0030769231,0.0003125,0.0046997389,0.0045045045,0.134529148,1.0,0.0647536953
1.4.5.2.3.2,58676,"Outfall Modification (incl' Works Outside Lot Boundary)",7112,"CCGTD1_IPS",WBS,"58669",,,,100,Complete,07/08/2017,27/06/2017,24/08/2018,06/08/2018,,,,,105,136,160,194,24,31,37,45,,,"CCGT D1_Integrated Programme Schedule;CIVILS;GENERAL & PRELIMINARIES;Statutory Submissions & Approval;BD Submissions (Engineer's Design)"
1.4.5.2.3.2.1,58678,"Temporary Works",7112,"CCGTD1_IPS",WBS,"58676",,,,100,Complete,26/02/2018,14/02/2018,24/08/2018,27/07/2018,,,,,134,169,160,193,31,39,37,45,,,"CCGT D1_Integrated Programme Schedule;CIVILS;GENERAL & PRELIMINARIES;Statutory Submissions & Approval;BD Submissions (Engineer's Design);Outfall Modification (incl' Works Outside Lot Boundary)"
1.4.5.2.3.2.1-1,ICMt1BA5,"BA5 - (1st) BD Approval to Temp.Works for Outfall Modif (incl' works outside lot boundary) {6b incl in 4b2-2}[APPROVED]",7112,"CCGTD1_IPS",TT_Task,"58678",-,-,-,100,TK_Complete,26/02/2018,14/02/2018,27/04/2018,24/04/2018,"","","ICMt1BA8 FS","ICMt1BA8",134,169,143,179,31,39,33,41,19,,"CCGT D1_Integrated Programme Schedule;CIVILS;GENERAL & PRELIMINARIES;Statutory Submissions & Approval;BD Submissions (Engineer's Design);Outfall Modification (incl' Works Outside Lot Boundary);Temporary Works",0,1,0.0,0.001017294,0.0,60,0.2,0.0000812387,0.0,0.0030769231,0.0,0.0026109661,0.0,0.134529148,0.2,0.0
1.4.5.2.3.2.1-2,ICMt1BA8,"BA8 - (1st) BD Consent to Temp.Works for Outfall Modif (incl' works outside lot boundary) {6b incl in 4b2-2}",7112,"CCGTD1_IPS",TT_Task,"58678",-,-,-,100,TK_Complete,11/06/2018,04/05/2018,08/07/2018,06/07/2018,"ICMt1BA5 FS,GENSUB06 FS","ICMt1BA5,GENSUB06","OAM10010 FS","OAM10010",149,181,153,190,34,42,35,44,30,,"CCGT D1_Integrated Programme Schedule;CIVILS;GENERAL & PRELIMINARIES;Statutory Submissions & Approval;BD Submissions (Engineer's Design);Outfall Modification (incl' Works Outside Lot Boundary);Temporary Works",2,1,0.0000008281,0.0008138352,0.001017294,27,0.0,0.0001575332,0.0136986301,0.0030769231,0.00125,0.0020887728,0.0032175032,0.0605381166,0.0,0.0312615326
1.4.5.2.3.2.2,58677,"Permanent Works",7112,"CCGTD1_IPS",WBS,"58676",,,,100,Complete,07/08/2017,27/06/2017,09/07/2018,06/08/2018,,,,,105,136,153,194,24,31,35,45,,,"CCGT D1_Integrated Programme Schedule;CIVILS;GENERAL & PRELIMINARIES;Statutory Submissions & Approval;BD Submissions (Engineer's Design);Outfall Modification (incl' Works Outside Lot Boundary)"
1.4.5.2.3.2.2-1,ICM_1BA5,"BA5 - (1st) BD Approval to GBP for Outfall Modification (incl' works outside lot boundary) [p.r.t.Act.ID.CWS-2BA5] {6a}",7112,"CCGTD1_IPS",TT_Task,"58677",-,-,-,100,TK_Complete,07/08/2017,27/06/2017,04/09/2017,25/07/2017,"","","","",105,136,109,140,24,31,25,32,9,,"CCGT D1_Integrated Programme Schedule;CIVILS;GENERAL & PRELIMINARIES;Statutory Submissions & Approval;BD Submissions (Engineer's Design);Outfall Modification (incl' Works Outside Lot Boundary);Permanent Works",0,0,0.0,0.0,0.0,28,1.0,0.0000812387,0.0,0.0,0.0,0.0,0.0,0.0627802691,1.0,0.0
1.4.5.2.3.2.2-2,ICMp1BA5,"BA5 - (1st) BD Approval to Permenent Works for Outfall Modification (incl' works outside lot boundary) {6c} [WITHDRAWN]",7112,"CCGTD1_IPS",TT_Task,"58677",-,-,-,100,TK_Complete,08/12/2017,02/01/2018,06/02/2018,25/01/2018,"","","ICMp1BA8 FS,ICMp2BA5 FS","ICMp1BA8,ICMp2BA5",123,163,131,166,28,38,30,38,16,,"CCGT D1_Integrated Programme Schedule;CIVILS;GENERAL & PRELIMINARIES;Statutory Submissions & Approval;BD Submissions (Engineer's Design);Outfall Modification (incl' Works Outside Lot Boundary);Permanent Works",0,2,0.0,0.0022380468,0.0,60,1.0,0.0000812387,0.0,0.0061538462,0.0,0.0057441253,0.0,0.134529148,1.0,0.0
1.4.5.2.3.2.2-3,ICMp1BA8,"BA8 - (1st) BD Consent to Permanent Works for Outfall Modification (incl' works outside lot boundary) {6c}",7112,"CCGTD1_IPS",TT_Task,"58677",-,-,-,100,TK_Complete,26/02/2018,26/01/2018,27/03/2018,24/02/2018,"ICMp1BA5 FS,GENSUB06 FS,PPSp2BA8 FF","ICMp1BA5,GENSUB06,PPSp2BA8","ICMp2BA5 FS","ICMp2BA5",134,167,138,171,31,38,32,39,19,,"CCGT D1_Integrated Programme Schedule;CIVILS;GENERAL & PRELIMINARIES;Statutory Submissions & Approval;BD Submissions (Engineer's Design);Outfall Modification (incl' Works Outside Lot Boundary);Permanent Works",3,1,0.0000024014,0.002034588,0.0018311292,29,1.0,0.0002600646,0.0205479452,0.0030769231,0.003625,0.0052219321,0.0057915058,0.0650224215,1.0,0.0732735693
1.4.5.2.3.2.2-4,ICMp2BA5,"BA5 - Approval to (Major) Amendment for Permenent Works for Outfall Modif (incl' works outside lot boundary){6ci} AD-TBC",7112,"CCGTD1_IPS",TT_Task,"58677",-,-,-,100,TK_Complete,28/04/2018,08/03/2018,27/06/2018,07/05/2018,"ICMp1BA5 FS,ICMp1BA8 FS","ICMp1BA5,ICMp1BA8","ICMp2BA8 FS","ICMp2BA8",143,172,152,181,33,40,35,42,26,,"CCGT D1_Integrated Programme Schedule;CIVILS;GENERAL & PRELIMINARIES;Statutory Submissions & Approval;BD Submissions (Engineer's Design);Outfall Modification (incl' Works Outside Lot Boundary);Permanent Works",2,1,0.0000028155,0.0018311292,0.002034588,60,1.0,0.0003493355,0.0136986301,0.0030769231,0.00425,0.0046997389,0.0064350064,0.134529148,1.0,0.1098521516
1.4.5.2.3.2.2-5,ICMp2BA8,"BA8 - Consent to (Major) Amendment for Permanent Works for Outfall Modif (incl' works outside lot boundary) {6ci} AD-TBC",7112,"CCGTD1_IPS",TT_Task,"58677",-,-,-,100,TK_Complete,10/06/2018,08/05/2018,09/07/2018,06/08/2018,"ICMp2BA5 FS","ICMp2BA5","OAM10120 FS","OAM10120",149,181,153,194,34,42,35,45,30,,"CCGT D1_Integrated Programme Schedule;CIVILS;GENERAL & PRELIMINARIES;Statutory Submissions & Approval;BD Submissions (Engineer's Design);Outfall Modification (incl' Works Outside Lot Boundary);Permanent Works",1,1,0.0000027327,0.0016276704,0.0022380468,29,0.0,0.0003787292,0.0068493151,0.0030769231,0.004125,0.0041775457,0.0070785071,0.0650224215,0.0,0.1218961513
1.4.5.2.3.3,58673,"Supplementary Cooling Water (SCW) Pump Sump A&A",7112,"CCGTD1_IPS",WBS,"58669",,,,100,Complete,29/04/2017,04/05/2017,29/04/2019,,,,,,91,128,195,,21,30,45,,,,"CCGT D1_Integrated Programme Schedule;CIVILS;GENERAL & PRELIMINARIES;Statutory Submissions & Approval;BD Submissions (Engineer's Design)"
1.4.5.2.3.3.1,58675,"Temporary Works",7112,"CCGTD1_IPS",WBS,"58673",,,,100,Complete,31/05/2017,24/05/2017,27/03/2018,26/02/2018,,,,,96,131,138,171,22,30,32,40,,,"CCGT D1_Integrated Programme Schedule;CIVILS;GENERAL & PRELIMINARIES;Statutory Submissions & Approval;BD Submissions (Engineer's Design);Supplementary Cooling Water (SCW) Pump Sump A&A"
1.4.5.2.3.3.1-1,SCWt1BA5,"BA5 - (1st) BD Approval to Temporary works for SCW and Culvert Modification (Wall only) [DISAPPROVED] {5b1}",7112,"CCGTD1_IPS",TT_Task,"58675",-,-,-,100,TK_Complete,31/05/2017,24/05/2017,18/07/2017,11/07/2017,"","","","",96,131,102,138,22,30,24,32,6,,"CCGT D1_Integrated Programme Schedule;CIVILS;GENERAL & PRELIMINARIES;Statutory Submissions & Approval;BD Submissions (Engineer's Design);Supplementary Cooling Water (SCW) Pump Sump A&A;Temporary Works",0,0,0.0,0.0,0.0,48,1.0,0.0000812387,0.0,0.0,0.0,0.0,0.0,0.1076233184,1.0,0.0
1.4.5.2.3.3.1-2,SCWtaBA5,"BA5 - (1st) BD Approval to Temp works for SCW & Culvert Modification (Resubmit incl wall, excav.& anchor)(Wet){5b1(r)}",7112,"CCGTD1_IPS",TT_Task,"58675",-,-,-,100,TK_Complete,29/08/2017,20/09/2017,28/10/2017,24/11/2017,"","","SCWtaBA8 FS","SCWtaBA8",108,148,117,158,25,34,27,36,11,,"CCGT D1_Integrated Programme Schedule;CIVILS;GENERAL & PRELIMINARIES;Statutory Submissions & Approval;BD Submissions (Engineer's Design);Supplementary Cooling Water (SCW) Pump Sump A&A;Temporary Works",0,1,0.0,0.0046795524,0.0,60,0.6,0.0000812387,0.0,0.0030769231,0.0,0.0120104439,0.0,0.134529148,0.6,0.0
1.4.5.2.3.3.1-3,SCWtaBA8,"BA8 - (1st) BD Consent to Temp works for SCW & Culvert Modification (Resubmit incl wall, excav.& anchor)(Wet){5b1(r)}",7112,"CCGTD1_IPS",TT_Task,"58675",-,-,-,100,TK_Complete,26/02/2018,29/01/2018,27/03/2018,26/02/2018,"SCWtaBA5 FS,GENSUB06 FS","SCWtaBA5,GENSUB06","ICM00025 FS,EV009010 FS,EV009004 FF","ICM00025,EV009010,EV009004",134,167,138,171,31,39,32,40,19,,"CCGT D1_Integrated Programme Schedule;CIVILS;GENERAL & PRELIMINARIES;Statutory Submissions & Approval;BD Submissions (Engineer's Design);Supplementary Cooling Water (SCW) Pump Sump A&A;Temporary Works",2,2,0.0000027741,0.0044760936,0.001017294,29,1.0,0.0001580619,0.0136986301,0.0061538462,0.0041875,0.0114882507,0.0032175032,0.0650224215,1.0,0.0314781678
1.4.5.2.3.3.2,58674,"Permanent Works",7112,"CCGTD1_IPS",WBS,"58673",,,,,Active,29/04/2017,04/05/2017,29/04/2019,,,,,,91,128,195,,21,30,45,,,,"CCGT D1_Integrated Programme Schedule;CIVILS;GENERAL & PRELIMINARIES;Statutory Submissions & Approval;BD Submissions (Engineer's Design);Supplementary Cooling Water (SCW) Pump Sump A&A"
1.4.5.2.3.3.2-1,SCW_1BA5,"BA5 - (1st) BD Approval to GBP for SCW Pump Sump A&A {5a}",7112,"CCGTD1_IPS",TT_FinMile,"58674",-,-,-,100,TK_Complete,29/04/2017,04/05/2017,29/04/2017,04/05/2017,"","","SCW_2BA5 FS","SCW_2BA5",91,128,91,128,21,30,21,30,4,,"CCGT D1_Integrated Programme Schedule;CIVILS;GENERAL & PRELIMINARIES;Statutory Submissions & Approval;BD Submissions (Engineer's Design);Supplementary Cooling Water (SCW) Pump Sump A&A;Permanent Works",0,1,0.0,0.0002034588,0.0,0,1.0,0.0000812387,0.0,0.0030769231,0.0,0.0005221932,0.0,0.0,1.0,0.0
1.4.5.2.3.3.2-2,SCWp1BA5,"BA5 - (1st) BD Approval to Permanent works for SCW and Culvert Modification {5c} [DISAPPROVED]",7112,"CCGTD1_IPS",TT_Task,"58674",-,-,-,100,TK_Complete,10/11/2017,01/12/2017,09/01/2018,22/01/2018,"","","SCWp1BA8 FS,SCWp2BA5 FS","SCWp1BA8,SCWp2BA5",119,159,127,166,27,37,29,38,14,,"CCGT D1_Integrated Programme Schedule;CIVILS;GENERAL & PRELIMINARIES;Statutory Submissions & Approval;BD Submissions (Engineer's Design);Supplementary Cooling Water (SCW) Pump Sump A&A;Permanent Works",0,2,0.0,0.002034588,0.0,60,1.0,0.0000812387,0.0,0.0061538462,0.0,0.0052219321,0.0,0.134529148,1.0,0.0
1.4.5.2.3.3.2-3,SCWp1BA8,"BA8 - (1st) BD Consent to Permanent works for SCW and Culvert Modification {5c} [CANCELLED]",7112,"CCGTD1_IPS",TT_Task,"58674",-,-,-,100,TK_Complete,30/04/2018,22/01/2018,29/05/2018,22/01/2018,"SCWp1BA5 FS,GENSUB06 FS","SCWp1BA5,GENSUB06","ICM10100 FS,PROMA050 FS","ICM10100,PROMA050",143,166,147,166,33,38,34,38,26,,"CCGT D1_Integrated Programme Schedule;CIVILS;GENERAL & PRELIMINARIES;Statutory Submissions & Approval;BD Submissions (Engineer's Design);Supplementary Cooling Water (SCW) Pump Sump A&A;Permanent Works",2,2,0.0000010075,0.0014242116,0.001017294,29,1.0,0.0001114392,0.0136986301,0.0061538462,0.0015208333,0.0036553525,0.0032175032,0.0650224215,1.0,0.0123746012
1.4.5.2.3.3.2-4,SCWd1BA5,"BA5 - (1st) BD Approval to Drainage Plan for SCW and Culvert Modification {5d}",7112,"CCGTD1_IPS",TT_Task,"58674",-,-,-,100,TK_Complete,09/08/2017,26/06/2017,08/10/2017,22/08/2017,"","","SCWd1BA8 FS,SCWd2BA5XX FS","SCWd1BA8,SCWd2BA5XX",106,136,114,144,24,31,26,33,10,,"CCGT D1_Integrated Programme Schedule;CIVILS;GENERAL & PRELIMINARIES;Statutory Submissions & Approval;BD Submissions (Engineer's Design);Supplementary Cooling Water (SCW) Pump Sump A&A;Permanent Works",0,2,0.0,0.0130213632,0.0,60,1.0,0.0000812387,0.0,0.0061538462,0.0,0.0334203655,0.0,0.134529148,1.0,0.0
1.4.5.2.3.3.2-5,SCWd1BA8,"BA8 - (1st) BD Consent to Draiange Plan for SCW and Culvert Modification {5d} - actual dates TBC",7112,"CCGTD1_IPS",TT_Task,"58674",-,-,-,100,TK_Complete,28/08/2017,08/03/2018,24/09/2017,06/04/2018,"SCWd1BA5 FS,GENSUB06 FS","SCWd1BA5,GENSUB06","SCWd2BA5XX FS,ICM00010 FS","SCWd2BA5XX,ICM00010",108,172,112,177,25,40,26,41,11,,"CCGT D1_Integrated Programme Schedule;CIVILS;GENERAL & PRELIMINARIES;Statutory Submissions & Approval;BD Submissions (Engineer's Design);Supplementary Cooling Water (SCW) Pump Sump A&A;Permanent Works",2,2,0.0000044302,0.0128179044,0.001017294,27,0.8,0.0001098387,0.0136986301,0.0061538462,0.0066875,0.0328981723,0.0032175032,0.0605381166,0.8,0.0117188035
1.4.5.2.3.3.2-6,SCW_2BA5,"BA5 - Approval to (Major) Amendment for GBP for SCW Pump Sump A&A {5a1} AF-TBC",7112,"CCGTD1_IPS",TT_Task,"58674",-,-,-,100,TK_Complete,23/04/2018,06/03/2018,23/05/2018,05/04/2018,"SCW_1BA5 FS","SCW_1BA5","","",142,172,147,176,33,40,34,41,25,,"CCGT D1_Integrated Programme Schedule;CIVILS;GENERAL & PRELIMINARIES;Statutory Submissions & Approval;BD Submissions (Engineer's Design);Supplementary Cooling Water (SCW) Pump Sump A&A;Permanent Works",1,0,0.0,0.0,0.0002034588,30,1.0,0.0001503957,0.0068493151,0.0,0.0,0.0,0.0006435006,0.067264574,1.0,0.0283369572
1.4.5.2.3.3.2-7,SCWd2BA5XX,"BA5 - Approval to (Major) Amendment for Drainage Plan for SCW and Culvert Modification {5di} actual dates TBC",7112,"CCGTD1_IPS",TT_Task,"58674",-,-,-,1900,TK_Active,10/12/2017,30/03/2018,08/02/2018,,"SCWd1BA5 FS,SCWd1BA8 FS","SCWd1BA5,SCWd1BA8","","",123,176,132,,28,41,30,,16,2920,"CCGT D1_Integrated Programme Schedule;CIVILS;GENERAL & PRELIMINARIES;Statutory Submissions & Approval;BD Submissions (Engineer's Design);Supplementary Cooling Water (SCW) Pump Sump A&A;Permanent Works",2,0,0.0,0.0,0.0012207528,60,1.0,0.0001886122,0.0136986301,0.0,0.0,0.0,0.0038610039,0.134529148,1.0,0.0439960995
1.4.5.2.3.3.2-8,SCWp2BA5,"BA5 -  Approval to (Major) Amendment for Permanent works for SCW and Culvert Modification {5c(r)} [RESUBMISSION]",7112,"CCGTD1_IPS",TT_Task,"58674",-,-,-,100,TK_Complete,23/04/2018,05/03/2018,22/06/2018,11/05/2018,"SCWp1BA5 FS","SCWp1BA5","SCWp2BA8 FS","SCWp2BA8",142,172,151,182,33,40,35,42,25,,"CCGT D1_Integrated Programme Schedule;CIVILS;GENERAL & PRELIMINARIES;Statutory Submissions & Approval;BD Submissions (Engineer's Design);Supplementary Cooling Water (SCW) Pump Sump A&A;Permanent Works",1,1,0.0000000414,0.0016276704,0.0002034588,60,0.0,0.0001278614,0.0068493151,0.0030769231,0.0000625,0.0041775457,0.0006435006,0.134529148,0.0,0.0191035666
1.4.5.2.3.3.2-9,SCWp2BA8,"BA8 - Consent to (Major) Amendment for Permanent works for SCW and Culvert Modification {5c(r)} [RESUBMISSION]",7112,"CCGTD1_IPS",TT_Task,"58674",-,-,-,100,TK_Complete,31/03/2019,23/11/2018,29/04/2019,19/12/2018,"SCWp2BA5 FS,GENSUB35 FS","SCWp2BA5,GENSUB35","ICM10100 FS,PROMA050 FS","ICM10100,PROMA050",191,210,195,213,44,49,45,49,49,,"CCGT D1_Integrated Programme Schedule;CIVILS;GENERAL & PRELIMINARIES;Statutory Submissions & Approval;BD Submissions (Engineer's Design);Supplementary Cooling Water (SCW) Pump Sump A&A;Permanent Works",2,2,0.0000012559,0.0014242116,0.0012207528,29,1.0,0.0002797266,0.0136986301,0.0061538462,0.0018958333,0.0036553525,0.0038610039,0.0650224215,1.0,0.0813300271
1.4.5.2.3.4,58670,"Cooling Water System",7112,"CCGTD1_IPS",WBS,"58669",,,,100,Complete,22/04/2017,11/04/2017,01/01/2020,22/10/2019,,,,,90,125,231,257,21,29,53,60,,,"CCGT D1_Integrated Programme Schedule;CIVILS;GENERAL & PRELIMINARIES;Statutory Submissions & Approval;BD Submissions (Engineer's Design)"
1.4.5.2.3.4.1,58672,"Temporary Works",7112,"CCGTD1_IPS",WBS,"58670",,,,100,Complete,22/04/2017,11/04/2017,04/01/2018,28/12/2017,,,,,90,125,127,162,21,29,29,38,,,"CCGT D1_Integrated Programme Schedule;CIVILS;GENERAL & PRELIMINARIES;Statutory Submissions & Approval;BD Submissions (Engineer's Design);Cooling Water System"
1.4.5.2.3.4.1-1,SFFt1BA8,"BA8 - (1st) BD Consent to Temporary works for Shaft F and Double Pipe Trench (for Shaft F Wall only) {4b1(r)}",7112,"CCGTD1_IPS",TT_Task,"58672",-,-,-,100,TK_Complete,03/07/2017,05/05/2017,03/07/2017,21/06/2017,"SFFt1BA5 FS","SFFt1BA5","SFF10020 FS","SFF10020",100,129,100,135,23,30,23,31,8,,"CCGT D1_Integrated Programme Schedule;CIVILS;GENERAL & PRELIMINARIES;Statutory Submissions & Approval;BD Submissions (Engineer's Design);Cooling Water System;Temporary Works",1,1,0.000001739,0.0085452696,0.0002034588,0,0.0,0.0000812387,0.0068493151,0.0030769231,0.002625,0.0219321149,0.0006435006,0.0,0.0,0.0
1.4.5.2.3.4.1-2,SFFt1BA5,"BA5 - (1st) BD Approval to Temporary works for Shaft F and Double Pipe Trench {4b1(r)}",7112,"CCGTD1_IPS",TT_FinMile,"58672",-,-,-,100,TK_Complete,22/04/2017,04/05/2017,22/04/2017,04/05/2017,"","","SFFt1BA8 FS","SFFt1BA8",90,128,90,128,21,30,21,30,4,,"CCGT D1_Integrated Programme Schedule;CIVILS;GENERAL & PRELIMINARIES;Statutory Submissions & Approval;BD Submissions (Engineer's Design);Cooling Water System;Temporary Works",0,1,0.0,0.0087487284,0.0,0,1.0,0.0000812387,0.0,0.0030769231,0.0,0.0224543081,0.0,0.0,1.0,0.0
1.4.5.2.3.4.1-3,SFEt1BA5,"BA5 - (1st) BD Approval toTemporary works for Shaft E and Discharge Culvert {4b2(r)}",7112,"CCGTD1_IPS",TT_FinMile,"58672",-,-,-,100,TK_Complete,22/04/2017,02/05/2017,22/04/2017,02/05/2017,"","","SFE-BA58 FS","SFE-BA58",90,128,90,128,21,30,21,30,4,,"CCGT D1_Integrated Programme Schedule;CIVILS;GENERAL & PRELIMINARIES;Statutory Submissions & Approval;BD Submissions (Engineer's Design);Cooling Water System;Temporary Works",0,1,0.0,0.016276704,0.0,0,1.0,0.0000812387,0.0,0.0030769231,0.0,0.0417754569,0.0,0.0,1.0,0.0
1.4.5.2.3.4.1-4,SFDt1BA5,"BA5 - (1st) BD Approval to Temporary works for Shaft D (with LCAL's proposal incorporated) [DISAPPROVED] {4b3(r1)}",7112,"CCGTD1_IPS",TT_Task,"58672",-,-,-,100,TK_Complete,16/08/2017,21/06/2017,15/10/2017,16/08/2017,"SFDtSA10 FF","SFDtSA10","SFDt1BA8 FS","SFDt1BA8",107,135,115,143,24,31,26,33,10,,"CCGT D1_Integrated Programme Schedule;CIVILS;GENERAL & PRELIMINARIES;Statutory Submissions & Approval;BD Submissions (Engineer's Design);Cooling Water System;Temporary Works",1,1,0.0000001035,0.0002034588,0.0006103764,60,1.0,0.0002101501,0.0068493151,0.0030769231,0.00015625,0.0005221932,0.0019305019,0.134529148,1.0,0.0528211904
1.4.5.2.3.4.1-5,SFAt1BA5,"BA5 - (1st) BD Approval to Temporary works for Shaft A, Pump Station, Diversion Culvert (Wall Only) {4b4}",7112,"CCGTD1_IPS",TT_Task,"58672",-,-,-,100,TK_Complete,11/06/2017,11/04/2017,09/08/2017,15/06/2017,"","","SFAt1BA8 FF","SFAt1BA8",97,125,106,134,22,29,24,31,7,,"CCGT D1_Integrated Programme Schedule;CIVILS;GENERAL & PRELIMINARIES;Statutory Submissions & Approval;BD Submissions (Engineer's Design);Cooling Water System;Temporary Works",0,1,0.0,0.0144455748,0.0,59,0.2,0.0000812387,0.0,0.0030769231,0.0,0.037075718,0.0,0.1322869955,0.2,0.0
1.4.5.2.3.4.1-6,SFAt1BA8,"BA8 - (1st) BD Consent toTemporary works for Shaft A, Pump Station, Diversion Culvert (Wall Only) {4b4}",7112,"CCGTD1_IPS",TT_Task,"58672",-,-,-,100,TK_Complete,07/08/2017,16/06/2017,03/09/2017,13/07/2017,"SFAt1BA5 FF,GENSUB06 FS","SFAt1BA5,GENSUB06","SFA-BA58 FS,SFA10020 FS","SFA-BA58,SFA10020",105,135,109,138,24,31,25,32,9,,"CCGT D1_Integrated Programme Schedule;CIVILS;GENERAL & PRELIMINARIES;Statutory Submissions & Approval;BD Submissions (Engineer's Design);Cooling Water System;Temporary Works",2,2,0.0000105166,0.014242116,0.001017294,27,1.0,0.0001575332,0.0136986301,0.0061538462,0.015875,0.0365535248,0.0032175032,0.0605381166,1.0,0.0312615326
1.4.5.2.3.4.1-7,SFFtABA8,"BA8 - (1st) BD Consent to Temp works for Shaft F & Double Pipe Trench (Alternative for Zone A Sheet Pile) {4b1-alt A}",7112,"CCGTD1_IPS",TT_Task,"58672",-,-,-,100,TK_Complete,03/07/2017,24/05/2017,03/07/2017,21/06/2017,"SFFtABA5 FS","SFFtABA5","","",100,131,100,135,23,30,23,31,8,,"CCGT D1_Integrated Programme Schedule;CIVILS;GENERAL & PRELIMINARIES;Statutory Submissions & Approval;BD Submissions (Engineer's Design);Cooling Water System;Temporary Works",1,0,0.0,0.0,0.0002034588,0,0.0,0.0000812387,0.0068493151,0.0,0.0,0.0,0.0006435006,0.0,0.0,0.0
1.4.5.2.3.4.1-8,SFFtABA5,"BA5 - (1st) BD Approval to Temp works for Shaft F & Double Pipe Trench (Alternative for Zone A Sheet Pile) {4b1-alt A}",7112,"CCGTD1_IPS",TT_FinMile,"58672",-,-,-,100,TK_Complete,24/05/2017,23/05/2017,24/05/2017,23/05/2017,"","","SFFtABA8 FS","SFFtABA8",95,131,95,131,22,30,22,30,5,,"CCGT D1_Integrated Programme Schedule;CIVILS;GENERAL & PRELIMINARIES;Statutory Submissions & Approval;BD Submissions (Engineer's Design);Cooling Water System;Temporary Works",0,1,0.0,0.0002034588,0.0,0,1.0,0.0000812387,0.0,0.0030769231,0.0,0.0005221932,0.0,0.0,1.0,0.0
1.4.5.2.3.4.1-9,SFJt2BA5,"BA5 - Resubmission for Shaft F(Ring Beam) & Double Pipe Trench Amendment - Pipe Jacking {4b1-2}",7112,"CCGTD1_IPS",TT_Task,"58672",-,-,-,100,TK_Complete,07/09/2017,18/09/2017,06/11/2017,22/11/2017,"","","SFJt2BA8 FS","SFJt2BA8",110,148,118,157,25,34,27,36,11,,"CCGT D1_Integrated Programme Schedule;CIVILS;GENERAL & PRELIMINARIES;Statutory Submissions & Approval;BD Submissions (Engineer's Design);Cooling Water System;Temporary Works",0,1,0.0,0.0012207528,0.0,60,0.6,0.0000812387,0.0,0.0030769231,0.0,0.0031331593,0.0,0.134529148,0.6,0.0
1.4.5.2.3.4.1-10,SFJt1BA5,"BA5 - Amendment to Temp works for Shaft F & Double Pipe Trench - Pipe Jacking [DISAPPROVED] {4b1-1}",7112,"CCGTD1_IPS",TT_Task,"58672",-,-,-,100,TK_Complete,03/07/2017,19/05/2017,31/08/2017,10/07/2017,"","","","",100,131,109,138,23,30,25,32,8,,"CCGT D1_Integrated Programme Schedule;CIVILS;GENERAL & PRELIMINARIES;Statutory Submissions & Approval;BD Submissions (Engineer's Design);Cooling Water System;Temporary Works",0,0,0.0,0.0,0.0,59,1.0,0.0000812387,0.0,0.0,0.0,0.0,0.0,0.1322869955,1.0,0.0
1.4.5.2.3.4.1-11,SFJt2BA8,"BA8 - Consent for Shaft F(Ring Beam) & Double Pipe Trench Amendment - Pipe Jacking {4b1-2}",7112,"CCGTD1_IPS",TT_Task,"58672",-,-,-,100,TK_Complete,05/12/2017,28/11/2017,04/01/2018,28/12/2017,"SFJt2BA5 FS","SFJt2BA5","SFF10060 FS","SFF10060",122,158,127,162,28,37,29,38,15,,"CCGT D1_Integrated Programme Schedule;CIVILS;GENERAL & PRELIMINARIES;Statutory Submissions & Approval;BD Submissions (Engineer's Design);Cooling Water System;Temporary Works",1,1,0.000000207,0.001017294,0.0002034588,30,1.0,0.0001503957,0.0068493151,0.0030769231,0.0003125,0.0026109661,0.0006435006,0.067264574,1.0,0.0283369572
1.4.5.2.3.4.1-12,SFJt1BA5a,"BA5 - Resubmission of Amendment (Type II) for Shaft F & DPT master construction sequence {4b1-1(r)}",7112,"CCGTD1_IPS",TT_Task,"58672",-,-,-,100,TK_Complete,22/06/2017,24/07/2017,21/08/2017,22/08/2017,"SFFtSA10a FS","SFFtSA10a","POW_BA58 FF","POW_BA58",99,140,107,144,23,32,25,33,7,,"CCGT D1_Integrated Programme Schedule;CIVILS;GENERAL & PRELIMINARIES;Statutory Submissions & Approval;BD Submissions (Engineer's Design);Cooling Water System;Temporary Works",1,1,0.0000351105,0.0431332655,0.0014242116,60,1.0,0.0002323393,0.0068493151,0.0030769231,0.053,0.1107049608,0.0045045045,0.134529148,1.0,0.0619131867
1.4.5.2.3.4.1-13,SFAt1BA8a,"BA5 & BA8 - BD Amendment (Type II) - Shaft A Location Shift {4b4-1}",7112,"CCGTD1_IPS",TT_Task,"58672",-,-,-,100,TK_Complete,07/08/2017,10/07/2017,03/09/2017,07/08/2017,"","","SFA10020 FS","SFA10020",105,138,109,142,24,32,25,33,9,,"CCGT D1_Integrated Programme Schedule;CIVILS;GENERAL & PRELIMINARIES;Statutory Submissions & Approval;BD Submissions (Engineer's Design);Cooling Water System;Temporary Works",0,1,0.0,0.0014242116,0.0,27,1.0,0.0000812387,0.0,0.0030769231,0.0,0.0036553525,0.0,0.0605381166,1.0,0.0
1.4.5.2.3.4.2,58671,"Permanent Works",7112,"CCGTD1_IPS",WBS,"58670",,,,100,Complete,05/07/2017,26/06/2017,01/01/2020,22/10/2019,,,,,101,136,231,257,23,31,53,60,,,"CCGT D1_Integrated Programme Schedule;CIVILS;GENERAL & PRELIMINARIES;Statutory Submissions & Approval;BD Submissions (Engineer's Design);Cooling Water System"
1.4.5.2.3.4.2-1,DBCp2BA5a,"BA5 - Approval to (Minor) Amendment  for Permanent Works for Discharge Box Culvert {4c1i(r1)}[RESUBMISSION#1]",7112,"CCGTD1_IPS",TT_Task,"58671",-,-,-,100,TK_Complete,06/03/2018,02/01/2018,05/04/2018,25/01/2018,"DBCp2BA5 FS","DBCp2BA5","DBCp2BA8 FS","DBCp2BA8",135,163,140,166,31,38,32,38,22,,"CCGT D1_Integrated Programme Schedule;CIVILS;GENERAL & PRELIMINARIES;Statutory Submissions & Approval;BD Submissions (Engineer's Design);Cooling Water System;Permanent Works",1,1,0.0000009937,0.0036622584,0.0014242116,30,1.0,0.0002689754,0.0068493151,0.0030769231,0.0015,0.0093994778,0.0045045045,0.067264574,1.0,0.0769247674
1.4.5.2.3.4.2-2,PPSp2BA5a,"BA5 - Approval to (Minor) Amendment for Permanent Works for Pump Sttn, Diver.Culvert {4c1i(r1)}[RESUMIT#1]",7112,"CCGTD1_IPS",TT_Task,"58671",-,-,-,100,TK_Complete,26/02/2018,02/01/2018,28/03/2018,25/01/2018,"PPSp2BA5 FS","PPSp2BA5","PPSp2BA8 FS","PPSp2BA8",134,163,139,166,31,38,32,38,18,,"CCGT D1_Integrated Programme Schedule;CIVILS;GENERAL & PRELIMINARIES;Statutory Submissions & Approval;BD Submissions (Engineer's Design);Cooling Water System;Permanent Works",1,1,0.0000037678,0.0105798576,0.0004069176,30,1.0,0.0001803186,0.0068493151,0.0030769231,0.0056875,0.027154047,0.0012870013,0.067264574,1.0,0.0405977959
1.4.5.2.3.4.2-3,CWS-2BA5,"BA5 - Approval to GBP Amendment CW System - Diversion Culvert, Pump Station, Discharge Culvert, Shaft F, etc  {4a1}",7112,"CCGTD1_IPS",TT_Task,"58671",-,-,-,100,TK_Complete,06/07/2017,27/06/2017,04/08/2017,25/07/2017,"","","CWS-2BA8XX FF","CWS-2BA8XX",101,136,105,140,23,31,24,32,9,,"CCGT D1_Integrated Programme Schedule;CIVILS;GENERAL & PRELIMINARIES;Statutory Submissions & Approval;BD Submissions (Engineer's Design);Cooling Water System;Permanent Works",0,1,0.0,0.0028484232,0.0,29,1.0,0.0000812387,0.0,0.0030769231,0.0,0.007310705,0.0,0.0650224215,1.0,0.0
1.4.5.2.3.4.2-4,CWS-2BA8XX,"BA8 - Consent to GBP Amendment Cooling Water System Part 1 - Diversion Culvert, Pump Station",7112,"CCGTD1_IPS",TT_FinMile,"58671",-,-,-,100,TK_Complete,01/01/2020,22/10/2019,01/01/2020,22/10/2019,"CWS-2BA5 FF,PPSp1BA8 FF","CWS-2BA5,PPSp1BA8","IBC10230 FS","IBC10230",231,257,231,257,53,60,53,60,86,,"CCGT D1_Integrated Programme Schedule;CIVILS;GENERAL & PRELIMINARIES;Statutory Submissions & Approval;BD Submissions (Engineer's Design);Cooling Water System;Permanent Works",2,1,0.0000035193,0.0026449644,0.0014242116,0,1.0,0.0000812387,0.0136986301,0.0030769231,0.0053125,0.0067885117,0.0045045045,0.0,1.0,0.0
1.4.5.2.3.4.2-5,CWS_2BA5XX,"BA5 - Approval to GBP Amendment Cooling Water System Part 2 - Shaft F, Seal Pit, Discharge Culvert",7112,"CCGTD1_IPS",TT_FinMile,"58671",-,-,-,100,TK_Complete,05/07/2017,05/07/2017,05/07/2017,05/07/2017,"","","CWS_2BA8XX FF","CWS_2BA8XX",101,137,101,137,23,32,23,32,9,,"CCGT D1_Integrated Programme Schedule;CIVILS;GENERAL & PRELIMINARIES;Statutory Submissions & Approval;BD Submissions (Engineer's Design);Cooling Water System;Permanent Works",0,1,0.0,0.0160732452,0.0,0,1.0,0.0000812387,0.0,0.0030769231,0.0,0.0412532637,0.0,0.0,1.0,0.0
1.4.5.2.3.4.2-6,CWS_2BA8XX,"BA8 - Consent to GBP Amendment Cooling Water System Part 2 - Shaft F, Seal Pit, Discharge Culvert",7112,"CCGTD1_IPS",TT_FinMile,"58671",-,-,-,100,TK_Complete,01/01/2020,10/05/2019,01/01/2020,10/05/2019,"SFFp1BA8 FF,SEAp1BA8 FF,DBCp1BA8 FF,CWS_2BA5XX FF","SFFp1BA8,SEAp1BA8,DBCp1BA8,CWS_2BA5XX","SFF10260 FS,DPT40010 FS,DBC10100 FS","SFF10260,DPT40010,DBC10100",231,234,231,234,53,54,53,54,86,,"CCGT D1_Integrated Programme Schedule;CIVILS;GENERAL & PRELIMINARIES;Statutory Submissions & Approval;BD Submissions (Engineer's Design);Cooling Water System;Permanent Works",4,3,0.0000294244,0.0158697864,0.0022380468,0,1.0,0.0000812387,0.0273972603,0.0092307692,0.0444166667,0.0407310705,0.0070785071,0.0,1.0,0.0
1.4.5.2.3.4.2-7,PPSp1BA5,"BA5 - (1st) BD Approval to Permanent Works for Pump Station, Diversion Culvert {4c1}",7112,"CCGTD1_IPS",TT_Task,"58671",-,-,-,100,TK_Complete,07/08/2017,14/07/2017,06/10/2017,12/09/2017,"","","PPSp1BA8 FF,PPSp2BA5 FS","PPSp1BA8,PPSp2BA5",105,139,114,147,24,32,26,34,9,,"CCGT D1_Integrated Programme Schedule;CIVILS;GENERAL & PRELIMINARIES;Statutory Submissions & Approval;BD Submissions (Engineer's Design);Cooling Water System;Permanent Works",0,2,0.0,0.0113936928,0.0,60,1.0,0.0000812387,0.0,0.0061538462,0.0,0.0292428198,0.0,0.134529148,1.0,0.0
1.4.5.2.3.4.2-8,PPSp1BA8,"BA8 - (1st) BD Consent to Permanent Works for Pump Station, Diversion Culvert {4c1} - actual dates TBC",7112,"CCGTD1_IPS",TT_Task,"58671",-,-,-,100,TK_Complete,13/09/2017,13/09/2017,12/10/2017,12/10/2017,"PPSp1BA5 FF,GENSUB06 FS","PPSp1BA5,GENSUB06","CWS-2BA8XX FF","CWS-2BA8XX",111,147,115,151,25,34,26,35,11,,"CCGT D1_Integrated Programme Schedule;CIVILS;GENERAL & PRELIMINARIES;Statutory Submissions & Approval;BD Submissions (Engineer's Design);Cooling Water System;Permanent Works",2,1,0.0000026499,0.0028484232,0.001017294,29,1.0,0.0001228973,0.0136986301,0.0030769231,0.004,0.007310705,0.0032175032,0.0650224215,1.0,0.0170695455
1.4.5.2.3.4.2-9,SFFp1BA5,"BA5 - (1st) BD Approval to Permanent works for Shaft F {4c2}",7112,"CCGTD1_IPS",TT_Task,"58671",-,-,-,100,TK_Complete,23/08/2017,18/08/2017,22/10/2017,16/10/2017,"","","SFFp1BA8 FS,SFFp2BA5 FS","SFFp1BA8,SFFp2BA5",108,144,116,152,25,33,27,35,10,,"CCGT D1_Integrated Programme Schedule;CIVILS;GENERAL & PRELIMINARIES;Statutory Submissions & Approval;BD Submissions (Engineer's Design);Cooling Water System;Permanent Works",0,2,0.0,0.0166836216,0.0,60,1.0,0.0000812387,0.0,0.0061538462,0.0,0.0428198433,0.0,0.134529148,1.0,0.0
1.4.5.2.3.4.2-10,SFFp1BA8,"BA8 - (1st) BD Consent to Permanent works for Shaft F {4c2} - actual dates TBC",7112,"CCGTD1_IPS",TT_Task,"58671",-,-,-,100,TK_Complete,18/10/2017,17/10/2017,16/11/2017,15/11/2017,"SFFp1BA5 FS,GENSUB06 FS","SFFp1BA5,GENSUB06","CWS_2BA8XX FF","CWS_2BA8XX",116,152,120,156,27,35,28,36,13,,"CCGT D1_Integrated Programme Schedule;CIVILS;GENERAL & PRELIMINARIES;Statutory Submissions & Approval;BD Submissions (Engineer's Design);Cooling Water System;Permanent Works",2,1,0.0000048926,0.0160732452,0.001017294,29,1.0,0.0001228973,0.0136986301,0.0030769231,0.0073854167,0.0412532637,0.0032175032,0.0650224215,1.0,0.0170695455
1.4.5.2.3.4.2-11,SEAp1BA5,"BA5 - (1st) BD Aprpoval to Permanent works for Seal Pit (4c2}",7112,"CCGTD1_IPS",TT_Task,"58671",-,-,-,100,TK_Complete,23/08/2017,18/08/2017,22/10/2017,16/10/2017,"","","SEAp1BA8 FS,SEAp2BA5 FS","SEAp1BA8,SEAp2BA5",108,144,116,152,25,33,27,35,10,,"CCGT D1_Integrated Programme Schedule;CIVILS;GENERAL & PRELIMINARIES;Statutory Submissions & Approval;BD Submissions (Engineer's Design);Cooling Water System;Permanent Works",0,2,0.0,0.0166836216,0.0,60,1.0,0.0000812387,0.0,0.0061538462,0.0,0.0428198433,0.0,0.134529148,1.0,0.0
1.4.5.2.3.4.2-12,SEAp1BA8,"BA8 - (1st) BD Consent to Permanent works for Seal Pit {4c2} - actual dates TBC",7112,"CCGTD1_IPS",TT_Task,"58671",-,-,-,100,TK_Complete,18/10/2017,17/10/2017,16/11/2017,15/11/2017,"SEAp1BA5 FS,GENSUB06 FS","SEAp1BA5,GENSUB06","CWS_2BA8XX FF","CWS_2BA8XX",116,152,120,156,27,35,28,36,13,,"CCGT D1_Integrated Programme Schedule;CIVILS;GENERAL & PRELIMINARIES;Statutory Submissions & Approval;BD Submissions (Engineer's Design);Cooling Water System;Permanent Works",2,1,0.0000058725,0.0160732452,0.001017294,29,1.0,0.0001228973,0.0136986301,0.0030769231,0.0088645833,0.0412532637,0.0032175032,0.0650224215,1.0,0.0170695455
1.4.5.2.3.4.2-13,DBCp1BA5,"BA5 - (1st) BD Approval for Permanent Works for Discharge Box Culvert {4c1}",7112,"CCGTD1_IPS",TT_Task,"58671",-,-,-,100,TK_Complete,23/08/2017,14/07/2017,22/10/2017,12/09/2017,"","","DBCp1BA8 FF,DBCp2BA5 FS","DBCp1BA8,DBCp2BA5",108,139,116,147,25,32,27,34,10,,"CCGT D1_Integrated Programme Schedule;CIVILS;GENERAL & PRELIMINARIES;Statutory Submissions & Approval;BD Submissions (Engineer's Design);Cooling Water System;Permanent Works",0,2,0.0,0.0168870804,0.0,60,1.0,0.0000812387,0.0,0.0061538462,0.0,0.0433420366,0.0,0.134529148,1.0,0.0
1.4.5.2.3.4.2-14,DBCp1BA8,"BA8 - (1st) BD Consent to Permanent Works for Discharge Box Culvert {4c1} - actual dates TBC",7112,"CCGTD1_IPS",TT_Task,"58671",-,-,-,100,TK_Complete,13/09/2017,13/09/2017,12/10/2017,12/10/2017,"DBCp1BA5 FF,GENSUB06 FS","DBCp1BA5,GENSUB06","CWS_2BA8XX FF,DBCp2BA5 FS","CWS_2BA8XX,DBCp2BA5",111,147,115,151,25,34,26,35,11,,"CCGT D1_Integrated Programme Schedule;CIVILS;GENERAL & PRELIMINARIES;Statutory Submissions & Approval;BD Submissions (Engineer's Design);Cooling Water System;Permanent Works",2,2,0.000006528,0.0166836216,0.001017294,29,1.0,0.0001260448,0.0136986301,0.0061538462,0.0098541667,0.0428198433,0.0032175032,0.0650224215,1.0,0.0183592062
1.4.5.2.3.4.2-15,CWSd1BA5,"BA5 - (1st) BD Approval to Cooling Water System Permanent Drainage Plan {4d}",7112,"CCGTD1_IPS",TT_Task,"58671",-,-,-,100,TK_Complete,09/08/2017,26/06/2017,08/10/2017,22/08/2017,"","","CWSd1BA8 FF,CWSd2BA5 FS","CWSd1BA8,CWSd2BA5",106,136,114,144,24,31,26,33,10,,"CCGT D1_Integrated Programme Schedule;CIVILS;GENERAL & PRELIMINARIES;Statutory Submissions & Approval;BD Submissions (Engineer's Design);Cooling Water System;Permanent Works",0,2,0.0,0.0028484232,0.0,60,1.0,0.0000812387,0.0,0.0061538462,0.0,0.007310705,0.0,0.134529148,1.0,0.0
1.4.5.2.3.4.2-16,CWSd1BA8,"BA8 - (1st) BD Consent to Cooling Water System Permanent Drainage Plan {4d} - actual dates TBC",7112,"CCGTD1_IPS",TT_Task,"58671",-,-,-,100,TK_Complete,26/08/2017,23/08/2017,24/09/2017,21/09/2017,"CWSd1BA5 FF,GENSUB06 FS","CWSd1BA5,GENSUB06","CWSd2BA5 FS","CWSd2BA5",108,144,112,148,25,33,26,34,10,,"CCGT D1_Integrated Programme Schedule;CIVILS;GENERAL & PRELIMINARIES;Statutory Submissions & Approval;BD Submissions (Engineer's Design);Cooling Water System;Permanent Works",2,1,0.0000012421,0.0026449644,0.001017294,29,1.0,0.0001114392,0.0136986301,0.0030769231,0.001875,0.0067885117,0.0032175032,0.0650224215,1.0,0.0123746012
1.4.5.2.3.4.2-17,PPSp2BA5,"BA5 - Approval to (Minor) Amendment for Permanent Works for Pump Station, Diversion Culvert {4c1i}[WITHDRAWN]",7112,"CCGTD1_IPS",TT_Task,"58671",-,-,-,100,TK_Complete,08/12/2017,08/12/2017,07/01/2018,02/01/2018,"PPSp1BA5 FS","PPSp1BA5","PPSp2BA5a FS","PPSp2BA5a",123,160,127,163,28,37,29,38,16,,"CCGT D1_Integrated Programme Schedule;CIVILS;GENERAL & PRELIMINARIES;Statutory Submissions & Approval;BD Submissions (Engineer's Design);Cooling Water System;Permanent Works",1,1,0.0000016562,0.0107833164,0.0002034588,30,1.0,0.0001164033,0.0068493151,0.0030769231,0.0025,0.0276762402,0.0006435006,0.067264574,1.0,0.0144086223
1.4.5.2.3.4.2-18,PPSp2BA8,"BA8 - Consent to (Major) Amendment for Permanent Works for Pump Station, Diversion Culvert {4c1i(r1)}",7112,"CCGTD1_IPS",TT_Task,"58671",-,-,-,100,TK_Complete,26/02/2018,26/01/2018,27/03/2018,24/02/2018,"PPSp2BA5a FS","PPSp2BA5a","PPS10260 FS,IBC10230 FS,ICMp1BA8 FF","PPS10260,IBC10230,ICMp1BA8",134,167,138,171,31,38,32,39,18,,"CCGT D1_Integrated Programme Schedule;CIVILS;GENERAL & PRELIMINARIES;Statutory Submissions & Approval;BD Submissions (Engineer's Design);Cooling Water System;Permanent Works",1,3,0.0000057965,0.0103763988,0.0006103764,29,1.0,0.0002347362,0.0068493151,0.0092307692,0.00875,0.0266318538,0.0019305019,0.0650224215,1.0,0.0628952919
1.4.5.2.3.4.2-19,CWSd2BA5,"BA5 - Approval to (Minor) Amendment for Cooling Water System Permanent Drainage Plan {4di}",7112,"CCGTD1_IPS",TT_Task,"58671",-,-,-,100,TK_Complete,01/03/2018,29/03/2018,30/04/2018,18/04/2018,"CWSd1BA5 FS,CWSd1BA8 FS","CWSd1BA5,CWSd1BA8","CWSd2BA8 FS","CWSd2BA8",135,175,143,178,31,41,33,41,21,,"CCGT D1_Integrated Programme Schedule;CIVILS;GENERAL & PRELIMINARIES;Statutory Submissions & Approval;BD Submissions (Engineer's Design);Cooling Water System;Permanent Works",2,1,0.0000020702,0.0024415056,0.0012207528,60,1.0,0.0002227207,0.0136986301,0.0030769231,0.003125,0.0062663185,0.0038610039,0.134529148,1.0,0.0579719901
1.4.5.2.3.4.2-20,CWSd2BA8,"BA8 - Consent to (Minor) Amendment for Cooling Water System Permanent Drainage Plan {4di} [WITHDRAWN]",7112,"CCGTD1_IPS",TT_FinMile,"58671",-,-,-,100,TK_Complete,01/06/2019,27/03/2019,01/06/2019,27/03/2019,"CWSd2BA5 FS","CWSd2BA5","CWSd3BA5 FS","CWSd3BA5",200,227,200,227,46,53,46,53,61,,"CCGT D1_Integrated Programme Schedule;CIVILS;GENERAL & PRELIMINARIES;Statutory Submissions & Approval;BD Submissions (Engineer's Design);Cooling Water System;Permanent Works",1,1,0.0000022772,0.0022380468,0.0014242116,0,1.0,0.0000812387,0.0068493151,0.0030769231,0.0034375,0.0057441253,0.0045045045,0.0,1.0,0.0
1.4.5.2.3.4.2-21,DBCp2BA5,"BA5 - Approval to (Minor) Amendment  for Permanent Works for Discharge Box Culvert {4c1i}[WITHDRAWN]",7112,"CCGTD1_IPS",TT_Task,"58671",-,-,-,100,TK_Complete,08/12/2017,08/12/2017,02/01/2018,02/01/2018,"DBCp1BA5 FS,DBCp1BA8 FS","DBCp1BA5,DBCp1BA8","DBCp2BA5a FS","DBCp2BA5a",123,160,126,163,28,37,29,38,16,,"CCGT D1_Integrated Programme Schedule;CIVILS;GENERAL & PRELIMINARIES;Statutory Submissions & Approval;BD Submissions (Engineer's Design);Cooling Water System;Permanent Works",2,1,0.0000004968,0.0038657172,0.0012207528,25,1.0,0.0002205436,0.0136986301,0.0030769231,0.00075,0.009921671,0.0038610039,0.0560538117,1.0,0.0570799106
1.4.5.2.3.4.2-22,DBCp2BA8,"BA8 - Consent to (Major) Amendment for Permanent Works for Discharge Box Culvert {4c1i(r1)} - actual date TBC",7112,"CCGTD1_IPS",TT_Task,"58671",-,-,-,100,TK_Complete,06/04/2018,26/01/2018,05/05/2018,24/02/2018,"DBCp2BA5a FS","DBCp2BA5a","DBC10100 FS","DBC10100",140,167,144,171,32,38,33,39,24,,"CCGT D1_Integrated Programme Schedule;CIVILS;GENERAL & PRELIMINARIES;Statutory Submissions & Approval;BD Submissions (Engineer's Design);Cooling Water System;Permanent Works",1,1,0.0000014077,0.0034587996,0.0016276704,29,1.0,0.00031029,0.0068493151,0.0030769231,0.002125,0.0088772846,0.0051480051,0.0650224215,1.0,0.0938533403
1.4.5.2.3.4.2-23,SEAp2BA5,"BA5 - Approval to (Major) Amendment for Permanent works for Seal Pit {4c2i}",7112,"CCGTD1_IPS",TT_Task,"58671",-,-,-,100,TK_Complete,26/02/2018,19/01/2018,28/03/2018,13/02/2018,"SEAp1BA5 FS","SEAp1BA5","SEAp2BA8 FS","SEAp2BA8",134,166,139,169,31,38,32,39,19,,"CCGT D1_Integrated Programme Schedule;CIVILS;GENERAL & PRELIMINARIES;Statutory Submissions & Approval;BD Submissions (Engineer's Design);Cooling Water System;Permanent Works",1,1,0.0000002001,0.0018311292,0.0002034588,30,1.0,0.0001164033,0.0068493151,0.0030769231,0.0003020833,0.0046997389,0.0006435006,0.067264574,1.0,0.0144086223
1.4.5.2.3.4.2-24,SEAp2BA8,"BA8 - Consent to (Major) Amendment for Permanent works for Seal Pit {4c2i} - actual dates TBC",7112,"CCGTD1_IPS",TT_Task,"58671",-,-,-,100,TK_Complete,29/03/2018,14/02/2018,27/04/2018,15/03/2018,"SEAp2BA5 FS","SEAp2BA5","DPT40010 FS","DPT40010",139,169,143,173,32,39,33,40,24,,"CCGT D1_Integrated Programme Schedule;CIVILS;GENERAL & PRELIMINARIES;Statutory Submissions & Approval;BD Submissions (Engineer's Design);Cooling Water System;Permanent Works",1,1,0.0000004899,0.0016276704,0.0004069176,29,1.0,0.0001803186,0.0068493151,0.0030769231,0.0007395833,0.0041775457,0.0012870013,0.0650224215,1.0,0.0405977959
1.4.5.2.3.4.2-25,SFFp2BA5,"BA5 -  Approval to (Major) Amendment for Permanent works for Shaft F {4c2i}",7112,"CCGTD1_IPS",TT_Task,"58671",-,-,-,100,TK_Complete,26/02/2018,19/01/2018,28/03/2018,13/02/2018,"SFFp1BA5 FS","SFFp1BA5","SFFp2BA8 FS","SFFp2BA8",134,166,139,169,31,38,32,39,19,,"CCGT D1_Integrated Programme Schedule;CIVILS;GENERAL & PRELIMINARIES;Statutory Submissions & Approval;BD Submissions (Engineer's Design);Cooling Water System;Permanent Works",1,1,0.00000118,0.0134282808,0.0002034588,30,1.0,0.0001164033,0.0068493151,0.0030769231,0.00178125,0.034464752,0.0006435006,0.067264574,1.0,0.0144086223
1.4.5.2.3.4.2-26,SFFp2BA8,"BA8 - Consent to (Major) Amendment for Permanent works for Shaft F {4c2i}",7112,"CCGTD1_IPS",TT_Task,"58671",-,-,-,100,TK_Complete,29/03/2018,14/02/2018,27/04/2018,15/03/2018,"SFFp2BA5 FS","SFFp2BA5","SFF10260 FS","SFF10260",139,169,143,173,32,39,33,40,24,,"CCGT D1_Integrated Programme Schedule;CIVILS;GENERAL & PRELIMINARIES;Statutory Submissions & Approval;BD Submissions (Engineer's Design);Cooling Water System;Permanent Works",1,1,0.0000038299,0.013224822,0.0004069176,29,1.0,0.0001803186,0.0068493151,0.0030769231,0.00578125,0.0339425587,0.0012870013,0.0650224215,1.0,0.0405977959
1.4.5.2.3.4.2-27,CWSd3BA5,"BA5 - Approval to 2nd (Minor) Amendment for Cooling Water System Permanent Drainage Plan {4dii}",7112,"CCGTD1_IPS",TT_Task,"58671",-,-,-,100,TK_Complete,01/06/2019,02/05/2019,01/06/2019,27/05/2019,"CWSd2BA8 FS","CWSd2BA8","CWSd3BA8 FS","CWSd3BA8",200,232,200,236,46,54,46,55,61,,"CCGT D1_Integrated Programme Schedule;CIVILS;GENERAL & PRELIMINARIES;Statutory Submissions & Approval;BD Submissions (Engineer's Design);Cooling Water System;Permanent Works",1,1,0.0000024014,0.002034588,0.0016276704,0,0.0,0.0000812387,0.0068493151,0.0030769231,0.003625,0.0052219321,0.0051480051,0.0,0.0,0.0
1.4.5.2.3.4.2-28,CWSd3BA8,"BA8 - Consent to 2nd (Minor) Amendment for Cooling Water System Permanent Drainage Plan {4dii}",7112,"CCGTD1_IPS",TT_Task,"58671",-,-,-,100,TK_Complete,02/08/2019,13/06/2019,29/08/2019,22/07/2019,"CWSd3BA5 FS","CWSd3BA5","DBC10110 FS,DBC20110 FS,DBC30030 FS,DBC40010 FS","DBC10110,DBC20110,DBC30030,DBC40010",209,238,213,244,48,55,49,57,68,,"CCGT D1_Integrated Programme Schedule;CIVILS;GENERAL & PRELIMINARIES;Statutory Submissions & Approval;BD Submissions (Engineer's Design);Cooling Water System;Permanent Works",1,4,0.0000024428,0.0018311292,0.0018311292,27,0.0,0.0001503957,0.0068493151,0.0123076923,0.0036875,0.0046997389,0.0057915058,0.0605381166,0.0,0.0283369572
1.4.5.3,58628,"Salient Contract Dates",7112,"CCGTD1_IPS",WBS,"58627",,,,100,Complete,23/05/2017,23/05/2017,22/02/2020,,,,,,94,131,238,,22,30,55,,,,"CCGT D1_Integrated Programme Schedule;CIVILS;GENERAL & PRELIMINARIES"
1.4.5.3.1,58641,"Payment Milestones",7112,"CCGTD1_IPS",WBS,"58628",,,,100,Complete,29/05/2017,29/05/2017,09/04/2019,,,,,,95,132,192,,22,30,45,,,,"CCGT D1_Integrated Programme Schedule;CIVILS;GENERAL & PRELIMINARIES;Salient Contract Dates"
1.4.5.3.1.1,58667,"MS22 - Apr 2019",7112,"CCGTD1_IPS",WBS,"58641",,,,,NotStart,,,,,,,,,,,,,,,,,,,"CCGT D1_Integrated Programme Schedule;CIVILS;GENERAL & PRELIMINARIES;Salient Contract Dates;Payment Milestones"
1.4.5.3.1.2,58666,"MS21- Feb 2019",7112,"CCGTD1_IPS",WBS,"58641",,,,,NotStart,,,,,,,,,,,,,,,,,,,"CCGT D1_Integrated Programme Schedule;CIVILS;GENERAL & PRELIMINARIES;Salient Contract Dates;Payment Milestones"
1.4.5.3.1.3,58665,"MS20 - Jan 2019",7112,"CCGTD1_IPS",WBS,"58641",,,,,NotStart,,,,,,,,,,,,,,,,,,,"CCGT D1_Integrated Programme Schedule;CIVILS;GENERAL & PRELIMINARIES;Salient Contract Dates;Payment Milestones"
1.4.5.3.1.4,58664,"MS19 - Dec 2018",7112,"CCGTD1_IPS",WBS,"58641",,,,,NotStart,,,,,,,,,,,,,,,,,,,"CCGT D1_Integrated Programme Schedule;CIVILS;GENERAL & PRELIMINARIES;Salient Contract Dates;Payment Milestones"
1.4.5.3.1.5,58663,"MS18a - Nov 2018",7112,"CCGTD1_IPS",WBS,"58641",,,,,NotStart,,,,,,,,,,,,,,,,,,,"CCGT D1_Integrated Programme Schedule;CIVILS;GENERAL & PRELIMINARIES;Salient Contract Dates;Payment Milestones"
1.4.5.3.1.6,58662,"MS18 - Oct 2018",7112,"CCGTD1_IPS",WBS,"58641",,,,,NotStart,,,,,,,,,,,,,,,,,,,"CCGT D1_Integrated Programme Schedule;CIVILS;GENERAL & PRELIMINARIES;Salient Contract Dates;Payment Milestones"
1.4.5.3.1.7,58661,"MS17 - Oct 2018",7112,"CCGTD1_IPS",WBS,"58641",,,,,NotStart,,,,,,,,,,,,,,,,,,,"CCGT D1_Integrated Programme Schedule;CIVILS;GENERAL & PRELIMINARIES;Salient Contract Dates;Payment Milestones"
1.4.5.3.1.8,58660,"MS16 - Aug 2018",7112,"CCGTD1_IPS",WBS,"58641",,,,,NotStart,,,,,,,,,,,,,,,,,,,"CCGT D1_Integrated Programme Schedule;CIVILS;GENERAL & PRELIMINARIES;Salient Contract Dates;Payment Milestones"
1.4.5.3.1.9,58659,"MS15 - Aug 2018",7112,"CCGTD1_IPS",WBS,"58641",,,,,NotStart,,,,,,,,,,,,,,,,,,,"CCGT D1_Integrated Programme Schedule;CIVILS;GENERAL & PRELIMINARIES;Salient Contract Dates;Payment Milestones"
1.4.5.3.1.10,58658,"MS14 - Jun 2018",7112,"CCGTD1_IPS",WBS,"58641",,,,,NotStart,,,,,,,,,,,,,,,,,,,"CCGT D1_Integrated Programme Schedule;CIVILS;GENERAL & PRELIMINARIES;Salient Contract Dates;Payment Milestones"
1.4.5.3.1.11,58657,"MS 13 - Jun 2018",7112,"CCGTD1_IPS",WBS,"58641",,,,,NotStart,,,,,,,,,,,,,,,,,,,"CCGT D1_Integrated Programme Schedule;CIVILS;GENERAL & PRELIMINARIES;Salient Contract Dates;Payment Milestones"
1.4.5.3.1.12,58656,"MS12 - May 2018",7112,"CCGTD1_IPS",WBS,"58641",,,,100,Complete,26/11/2018,26/08/2018,26/11/2018,26/08/2018,,,,,173,197,173,197,40,46,40,46,,,"CCGT D1_Integrated Programme Schedule;CIVILS;GENERAL & PRELIMINARIES;Salient Contract Dates;Payment Milestones"
1.4.5.3.1.12-1,MS-12-1XX,"MS-12-1 / TBM Delivery to Site",7112,"CCGTD1_IPS",TT_FinMile,"58656",-,-,-,100,TK_Complete,26/11/2018,26/08/2018,26/11/2018,26/08/2018,"","","","",173,197,173,197,40,46,40,46,39,,"CCGT D1_Integrated Programme Schedule;CIVILS;GENERAL & PRELIMINARIES;Salient Contract Dates;Payment Milestones;MS12 - May 2018",0,0,0.0,0.0,0.0,0,1.0,0.0000812387,0.0,0.0,0.0,0.0,0.0,0.0,1.0,0.0
1.4.5.3.1.13,58655,"MS11 - Apr 2018",7112,"CCGTD1_IPS",WBS,"58641",,,,,NotStart,,,,,,,,,,,,,,,,,,,"CCGT D1_Integrated Programme Schedule;CIVILS;GENERAL & PRELIMINARIES;Salient Contract Dates;Payment Milestones"
1.4.5.3.1.14,58654,"MS10 - Mar 2018",7112,"CCGTD1_IPS",WBS,"58641",,,,100,Complete,26/11/2018,31/08/2018,09/04/2019,19/03/2019,,,,,173,198,192,226,40,46,45,52,,,"CCGT D1_Integrated Programme Schedule;CIVILS;GENERAL & PRELIMINARIES;Salient Contract Dates;Payment Milestones"
1.4.5.3.1.14-1,MS-10-1XX,"MS-10-1 / Complete Crane Walkway and Platforms within Turbine Hall",7112,"CCGTD1_IPS",TT_FinMile,"58654",-,-,-,100,TK_Complete,31/03/2019,19/03/2019,31/03/2019,19/03/2019,"","","","",191,226,191,226,44,52,44,52,49,,"CCGT D1_Integrated Programme Schedule;CIVILS;GENERAL & PRELIMINARIES;Salient Contract Dates;Payment Milestones;MS10 - Mar 2018",0,0,0.0,0.0,0.0,0,1.0,0.0000812387,0.0,0.0,0.0,0.0,0.0,0.0,1.0,0.0
1.4.5.3.1.14-2,MS-10-3XX,"MS-10-3 / Complete Condensate Polishing Pit",7112,"CCGTD1_IPS",TT_FinMile,"58654",-,-,-,100,TK_Complete,26/11/2018,09/09/2018,26/11/2018,09/09/2018,"","","","",173,199,173,199,40,46,40,46,39,,"CCGT D1_Integrated Programme Schedule;CIVILS;GENERAL & PRELIMINARIES;Salient Contract Dates;Payment Milestones;MS10 - Mar 2018",0,0,0.0,0.0,0.0,0,1.0,0.0000812387,0.0,0.0,0.0,0.0,0.0,0.0,1.0,0.0
1.4.5.3.1.14-3,MS-10-4XX,"MS-10-4 / Install 2 nos of 250t Overhead Crane",7112,"CCGTD1_IPS",TT_FinMile,"58654",-,-,-,100,TK_Complete,26/11/2018,31/08/2018,26/11/2018,31/08/2018,"","","","",173,198,173,198,40,46,40,46,39,,"CCGT D1_Integrated Programme Schedule;CIVILS;GENERAL & PRELIMINARIES;Salient Contract Dates;Payment Milestones;MS10 - Mar 2018",0,0,0.0,0.0,0.0,0,1.0,0.0000812387,0.0,0.0,0.0,0.0,0.0,0.0,1.0,0.0
1.4.5.3.1.14-4,MS-10-5XX,"MS-10-5 / Complete All Civil Works for Generator Transformer Area",7112,"CCGTD1_IPS",TT_FinMile,"58654",-,-,-,100,TK_Complete,09/04/2019,18/02/2019,09/04/2019,18/02/2019,"","","","",192,222,192,222,45,51,45,51,53,,"CCGT D1_Integrated Programme Schedule;CIVILS;GENERAL & PRELIMINARIES;Salient Contract Dates;Payment Milestones;MS10 - Mar 2018",0,0,0.0,0.0,0.0,0,1.0,0.0000812387,0.0,0.0,0.0,0.0,0.0,0.0,1.0,0.0
1.4.5.3.1.15,58653,"MS09 - Feb 2018",7112,"CCGTD1_IPS",WBS,"58641",,,,100,Complete,26/11/2018,09/09/2018,04/02/2019,02/01/2019,,,,,173,199,183,215,40,46,42,50,,,"CCGT D1_Integrated Programme Schedule;CIVILS;GENERAL & PRELIMINARIES;Salient Contract Dates;Payment Milestones"
1.4.5.3.1.15-1,MS-09-1XX,"MS-09-1 / Complete Southern Section of CW Trench",7112,"CCGTD1_IPS",TT_FinMile,"58653",-,-,-,100,TK_Complete,04/02/2019,02/01/2019,04/02/2019,02/01/2019,"","","","",183,215,183,215,42,50,42,50,46,,"CCGT D1_Integrated Programme Schedule;CIVILS;GENERAL & PRELIMINARIES;Salient Contract Dates;Payment Milestones;MS09 - Feb 2018",0,0,0.0,0.0,0.0,0,1.0,0.0000812387,0.0,0.0,0.0,0.0,0.0,0.0,1.0,0.0
1.4.5.3.1.15-2,MS_09XX,"MS-09 / Achievement of Milestone Requirements",7112,"CCGTD1_IPS",TT_FinMile,"58653",-,-,-,100,TK_Complete,04/02/2019,02/01/2019,04/02/2019,02/01/2019,"","","","",183,215,183,215,42,50,42,50,46,,"CCGT D1_Integrated Programme Schedule;CIVILS;GENERAL & PRELIMINARIES;Salient Contract Dates;Payment Milestones;MS09 - Feb 2018",0,0,0.0,0.0,0.0,0,1.0,0.0000812387,0.0,0.0,0.0,0.0,0.0,0.0,1.0,0.0
1.4.5.3.1.15-3,MS-09-2XX,"MS-09-2 / Complete Condensate Pit",7112,"CCGTD1_IPS",TT_FinMile,"58653",-,-,-,100,TK_Complete,26/11/2018,09/09/2018,26/11/2018,09/09/2018,"","","","",173,199,173,199,40,46,40,46,39,,"CCGT D1_Integrated Programme Schedule;CIVILS;GENERAL & PRELIMINARIES;Salient Contract Dates;Payment Milestones;MS09 - Feb 2018",0,0,0.0,0.0,0.0,0,1.0,0.0000812387,0.0,0.0,0.0,0.0,0.0,0.0,1.0,0.0
1.4.5.3.1.15-4,MS-09-3XX,"MS-09-3 / Pile Caps, Tie Beams and Ground Floor Slab for Turbine Hall Bldg",7112,"CCGTD1_IPS",TT_FinMile,"58653",-,-,-,100,TK_Complete,29/11/2018,30/09/2018,29/11/2018,30/09/2018,"","","","",174,202,174,202,40,47,40,47,41,,"CCGT D1_Integrated Programme Schedule;CIVILS;GENERAL & PRELIMINARIES;Salient Contract Dates;Payment Milestones;MS09 - Feb 2018",0,0,0.0,0.0,0.0,0,1.0,0.0000812387,0.0,0.0,0.0,0.0,0.0,0.0,1.0,0.0
1.4.5.3.1.16,58652,"MS08 - Feb 2018",7112,"CCGTD1_IPS",WBS,"58641",,,,100,Complete,26/07/2018,12/07/2018,26/07/2018,12/07/2018,,,,,156,190,156,190,36,44,36,44,,,"CCGT D1_Integrated Programme Schedule;CIVILS;GENERAL & PRELIMINARIES;Salient Contract Dates;Payment Milestones"
1.4.5.3.1.16-1,MS-08XX,"MS08-1 / Complete Supporting Structures for Overhead Cranes of Turbine Hall Building incl. Associated Roof Structures",7112,"CCGTD1_IPS",TT_FinMile,"58652",-,-,-,100,TK_Complete,26/07/2018,12/07/2018,26/07/2018,12/07/2018,"","","","",156,190,156,190,36,44,36,44,33,,"CCGT D1_Integrated Programme Schedule;CIVILS;GENERAL & PRELIMINARIES;Salient Contract Dates;Payment Milestones;MS08 - Feb 2018",0,0,0.0,0.0,0.0,0,1.0,0.0000812387,0.0,0.0,0.0,0.0,0.0,0.0,1.0,0.0
1.4.5.3.1.16-2,MS_08XX,"MS-08 / Achievement of Milestone Requirements",7112,"CCGTD1_IPS",TT_FinMile,"58652",-,-,-,100,TK_Complete,26/07/2018,12/07/2018,26/07/2018,12/07/2018,"","","","",156,190,156,190,36,44,36,44,33,,"CCGT D1_Integrated Programme Schedule;CIVILS;GENERAL & PRELIMINARIES;Salient Contract Dates;Payment Milestones;MS08 - Feb 2018",0,0,0.0,0.0,0.0,0,1.0,0.0000812387,0.0,0.0,0.0,0.0,0.0,0.0,1.0,0.0
1.4.5.3.1.17,58651,"MS07 - Feb 2018",7112,"CCGTD1_IPS",WBS,"58641",,,,100,Complete,23/04/2018,31/01/2018,26/05/2018,20/04/2018,,,,,142,167,147,179,33,39,34,41,,,"CCGT D1_Integrated Programme Schedule;CIVILS;GENERAL & PRELIMINARIES;Salient Contract Dates;Payment Milestones"
1.4.5.3.1.17-1,MS-07-1XX,"MS-07-1 / Complete Turboset Foundation and Supporting Pile Cap",7112,"CCGTD1_IPS",TT_FinMile,"58651",-,-,-,100,TK_Complete,23/04/2018,20/04/2018,23/04/2018,20/04/2018,"","","","",142,179,142,179,33,41,33,41,25,,"CCGT D1_Integrated Programme Schedule;CIVILS;GENERAL & PRELIMINARIES;Salient Contract Dates;Payment Milestones;MS07 - Feb 2018",0,0,0.0,0.0,0.0,0,1.0,0.0000812387,0.0,0.0,0.0,0.0,0.0,0.0,1.0,0.0
1.4.5.3.1.17-2,MS_07XX,"MS-07 / Achievement of Milestone Requirements",7112,"CCGTD1_IPS",TT_FinMile,"58651",-,-,-,100,TK_Complete,23/04/2018,20/04/2018,23/04/2018,20/04/2018,"","","","",142,179,142,179,33,41,33,41,25,,"CCGT D1_Integrated Programme Schedule;CIVILS;GENERAL & PRELIMINARIES;Salient Contract Dates;Payment Milestones;MS07 - Feb 2018",0,0,0.0,0.0,0.0,0,1.0,0.0000812387,0.0,0.0,0.0,0.0,0.0,0.0,1.0,0.0
1.4.5.3.1.17-3,MS-07-2XX,"MS-07-2 / Complete All Foundation for Stack, Diffuser and HRSG",7112,"CCGTD1_IPS",TT_FinMile,"58651",-,-,-,100,TK_Complete,26/05/2018,31/01/2018,26/05/2018,31/01/2018,"","","","",147,167,147,167,34,39,34,39,28,,"CCGT D1_Integrated Programme Schedule;CIVILS;GENERAL & PRELIMINARIES;Salient Contract Dates;Payment Milestones;MS07 - Feb 2018",0,0,0.0,0.0,0.0,0,1.0,0.0000812387,0.0,0.0,0.0,0.0,0.0,0.0,1.0,0.0
1.4.5.3.1.18,58650,"MS06c - Jan 2018",7112,"CCGTD1_IPS",WBS,"58641",,,,100,Complete,26/01/2019,31/12/2018,26/01/2019,20/01/2019,,,,,182,215,182,218,42,50,42,50,,,"CCGT D1_Integrated Programme Schedule;CIVILS;GENERAL & PRELIMINARIES;Salient Contract Dates;Payment Milestones"
1.4.5.3.1.18-1,MS-06c-2XX,"MS-06c-2 / Shaft F Excavation to -11mPD",7112,"CCGTD1_IPS",TT_FinMile,"58650",-,-,-,100,TK_Complete,26/01/2019,20/01/2019,26/01/2019,20/01/2019,"","","","",182,218,182,218,42,50,42,50,44,,"CCGT D1_Integrated Programme Schedule;CIVILS;GENERAL & PRELIMINARIES;Salient Contract Dates;Payment Milestones;MS06c - Jan 2018",0,0,0.0,0.0,0.0,0,1.0,0.0000812387,0.0,0.0,0.0,0.0,0.0,0.0,1.0,0.0
1.4.5.3.1.18-2,MS_06cXX,"MS-06c / Achievement of Milestone Requirements",7112,"CCGTD1_IPS",TT_FinMile,"58650",-,-,-,100,TK_Complete,26/01/2019,20/01/2019,26/01/2019,20/01/2019,"","","","",182,218,182,218,42,50,42,50,44,,"CCGT D1_Integrated Programme Schedule;CIVILS;GENERAL & PRELIMINARIES;Salient Contract Dates;Payment Milestones;MS06c - Jan 2018",0,0,0.0,0.0,0.0,0,1.0,0.0000812387,0.0,0.0,0.0,0.0,0.0,0.0,1.0,0.0
1.4.5.3.1.18-3,MS-06c-1XX,"MS-06c-1 / Pumping Station (Complete Pumping Test and Report Submission to BD)",7112,"CCGTD1_IPS",TT_FinMile,"58650",-,-,-,100,TK_Complete,26/01/2019,31/12/2018,26/01/2019,31/12/2018,"","","","",182,215,182,215,42,50,42,50,44,,"CCGT D1_Integrated Programme Schedule;CIVILS;GENERAL & PRELIMINARIES;Salient Contract Dates;Payment Milestones;MS06c - Jan 2018",0,0,0.0,0.0,0.0,0,1.0,0.0000812387,0.0,0.0,0.0,0.0,0.0,0.0,1.0,0.0
1.4.5.3.1.19,58649,"MS06b - Jan 2018",7112,"CCGTD1_IPS",WBS,"58641",,,,100,Complete,26/01/2019,10/01/2019,26/01/2019,10/01/2019,,,,,182,216,182,216,42,50,42,50,,,"CCGT D1_Integrated Programme Schedule;CIVILS;GENERAL & PRELIMINARIES;Salient Contract Dates;Payment Milestones"
1.4.5.3.1.19-1,MS-06bXX,"MS-06b-1 / First Delivery of Turbine Hall Curtain Wall / Glazing",7112,"CCGTD1_IPS",TT_FinMile,"58649",-,-,-,100,TK_Complete,26/01/2019,10/01/2019,26/01/2019,10/01/2019,"","","","",182,216,182,216,42,50,42,50,44,,"CCGT D1_Integrated Programme Schedule;CIVILS;GENERAL & PRELIMINARIES;Salient Contract Dates;Payment Milestones;MS06b - Jan 2018",0,0,0.0,0.0,0.0,0,1.0,0.0000812387,0.0,0.0,0.0,0.0,0.0,0.0,1.0,0.0
1.4.5.3.1.19-2,MS_06bXX,"MS-06b / Achievement of Milestone Requirements",7112,"CCGTD1_IPS",TT_FinMile,"58649",-,-,-,100,TK_Complete,26/01/2019,10/01/2019,26/01/2019,10/01/2019,"","","","",182,216,182,216,42,50,42,50,44,,"CCGT D1_Integrated Programme Schedule;CIVILS;GENERAL & PRELIMINARIES;Salient Contract Dates;Payment Milestones;MS06b - Jan 2018",0,0,0.0,0.0,0.0,0,1.0,0.0000812387,0.0,0.0,0.0,0.0,0.0,0.0,1.0,0.0
1.4.5.3.1.20,58648,"MS06a - Dec 2017",7112,"CCGTD1_IPS",WBS,"58641",,,,100,Complete,23/04/2018,21/03/2018,23/04/2018,21/03/2018,,,,,142,174,142,174,33,40,33,40,,,"CCGT D1_Integrated Programme Schedule;CIVILS;GENERAL & PRELIMINARIES;Salient Contract Dates;Payment Milestones"
1.4.5.3.1.20-1,MS-06aXX,"MS-06a-1/ First Delivery of Turbine Hall Roof / Wall Cladding",7112,"CCGTD1_IPS",TT_FinMile,"58648",-,-,-,100,TK_Complete,23/04/2018,21/03/2018,23/04/2018,21/03/2018,"","","","",142,174,142,174,33,40,33,40,25,,"CCGT D1_Integrated Programme Schedule;CIVILS;GENERAL & PRELIMINARIES;Salient Contract Dates;Payment Milestones;MS06a - Dec 2017",0,0,0.0,0.0,0.0,0,1.0,0.0000812387,0.0,0.0,0.0,0.0,0.0,0.0,1.0,0.0
1.4.5.3.1.20-2,MS_06aXX,"MS-06a / Achievement of Milestone Requirements",7112,"CCGTD1_IPS",TT_FinMile,"58648",-,-,-,100,TK_Complete,23/04/2018,21/03/2018,23/04/2018,21/03/2018,"","","","",142,174,142,174,33,40,33,40,25,,"CCGT D1_Integrated Programme Schedule;CIVILS;GENERAL & PRELIMINARIES;Salient Contract Dates;Payment Milestones;MS06a - Dec 2017",0,0,0.0,0.0,0.0,0,1.0,0.0000812387,0.0,0.0,0.0,0.0,0.0,0.0,1.0,0.0
1.4.5.3.1.21,58647,"MS06 - Nov 2017",7112,"CCGTD1_IPS",WBS,"58641",,,,100,Complete,09/12/2017,08/12/2017,26/05/2018,27/04/2018,,,,,123,160,147,180,28,37,34,42,,,"CCGT D1_Integrated Programme Schedule;CIVILS;GENERAL & PRELIMINARIES;Salient Contract Dates;Payment Milestones"
1.4.5.3.1.21-1,MS-06-1XX,"MS-06-1 / Delivery of All CWP for Southern Section",7112,"CCGTD1_IPS",TT_FinMile,"58647",-,-,-,100,TK_Complete,26/05/2018,27/04/2018,26/05/2018,27/04/2018,"","","","",147,180,147,180,34,42,34,42,28,,"CCGT D1_Integrated Programme Schedule;CIVILS;GENERAL & PRELIMINARIES;Salient Contract Dates;Payment Milestones;MS06 - Nov 2017",0,0,0.0,0.0,0.0,0,1.0,0.0000812387,0.0,0.0,0.0,0.0,0.0,0.0,1.0,0.0
1.4.5.3.1.21-2,MS_06XX,"MS-06 / Achievement of Milestone Requirements",7112,"CCGTD1_IPS",TT_FinMile,"58647",-,-,-,100,TK_Complete,26/05/2018,27/04/2018,26/05/2018,27/04/2018,"","","","",147,180,147,180,34,42,34,42,28,,"CCGT D1_Integrated Programme Schedule;CIVILS;GENERAL & PRELIMINARIES;Salient Contract Dates;Payment Milestones;MS06 - Nov 2017",0,0,0.0,0.0,0.0,0,1.0,0.0000812387,0.0,0.0,0.0,0.0,0.0,0.0,1.0,0.0
1.4.5.3.1.21-3,MS-06-2XX,"MS-06-2 / First Delivery of Turbine Hall Structural Steelwork",7112,"CCGTD1_IPS",TT_FinMile,"58647",-,-,-,100,TK_Complete,09/12/2017,08/12/2017,09/12/2017,08/12/2017,"","","","",123,160,123,160,28,37,28,37,16,,"CCGT D1_Integrated Programme Schedule;CIVILS;GENERAL & PRELIMINARIES;Salient Contract Dates;Payment Milestones;MS06 - Nov 2017",0,0,0.0,0.0,0.0,0,1.0,0.0000812387,0.0,0.0,0.0,0.0,0.0,0.0,1.0,0.0
1.4.5.3.1.22,58646,"MS05 - Aug 2017",7112,"CCGTD1_IPS",WBS,"58641",,,,100,Complete,11/09/2017,19/09/2017,23/04/2018,25/01/2018,,,,,110,148,142,166,25,34,33,38,,,"CCGT D1_Integrated Programme Schedule;CIVILS;GENERAL & PRELIMINARIES;Salient Contract Dates;Payment Milestones"
1.4.5.3.1.22-1,MS-05-1XX,"MS-05-1 / Submit to CLP Temp. Works for SCW & Intake Culvert Modification (Wall only)",7112,"CCGTD1_IPS",TT_FinMile,"58646",-,-,-,100,TK_Complete,11/09/2017,19/09/2017,11/09/2017,19/09/2017,"","","","",110,148,110,148,25,34,25,34,11,,"CCGT D1_Integrated Programme Schedule;CIVILS;GENERAL & PRELIMINARIES;Salient Contract Dates;Payment Milestones;MS05 - Aug 2017",0,0,0.0,0.0,0.0,0,1.0,0.0000812387,0.0,0.0,0.0,0.0,0.0,0.0,1.0,0.0
1.4.5.3.1.22-2,MS_05XX,"MS-05 / Achievement of Milestone Requirements",7112,"CCGTD1_IPS",TT_FinMile,"58646",-,-,-,100,TK_Complete,23/04/2018,25/01/2018,23/04/2018,25/01/2018,"","","","",142,166,142,166,33,38,33,38,25,,"CCGT D1_Integrated Programme Schedule;CIVILS;GENERAL & PRELIMINARIES;Salient Contract Dates;Payment Milestones;MS05 - Aug 2017",0,0,0.0,0.0,0.0,0,1.0,0.0000812387,0.0,0.0,0.0,0.0,0.0,0.0,1.0,0.0
1.4.5.3.1.22-3,MS-05-2XX,"MS-05-2 / Submit to CLP Temp. Works for SCW & Intake Culvert Modification (Excav. & ELS)",7112,"CCGTD1_IPS",TT_FinMile,"58646",-,-,-,100,TK_Complete,11/09/2017,19/09/2017,11/09/2017,19/09/2017,"","","","",110,148,110,148,25,34,25,34,11,,"CCGT D1_Integrated Programme Schedule;CIVILS;GENERAL & PRELIMINARIES;Salient Contract Dates;Payment Milestones;MS05 - Aug 2017",0,0,0.0,0.0,0.0,0,1.0,0.0000812387,0.0,0.0,0.0,0.0,0.0,0.0,1.0,0.0
1.4.5.3.1.22-4,MS-05-3XX,"MS-05-3 / Issue Purchase Order - CW Pipes",7112,"CCGTD1_IPS",TT_FinMile,"58646",-,-,-,100,TK_Complete,23/04/2018,25/01/2018,23/04/2018,25/01/2018,"","","","",142,166,142,166,33,38,33,38,25,,"CCGT D1_Integrated Programme Schedule;CIVILS;GENERAL & PRELIMINARIES;Salient Contract Dates;Payment Milestones;MS05 - Aug 2017",0,0,0.0,0.0,0.0,0,1.0,0.0000812387,0.0,0.0,0.0,0.0,0.0,0.0,1.0,0.0
1.4.5.3.1.23,58645,"MS04 - Aug 2017",7112,"CCGTD1_IPS",WBS,"58641",,,,100,Complete,28/08/2017,26/08/2017,26/05/2018,04/04/2018,,,,,108,145,147,176,25,33,34,41,,,"CCGT D1_Integrated Programme Schedule;CIVILS;GENERAL & PRELIMINARIES;Salient Contract Dates;Payment Milestones"
1.4.5.3.1.23-1,MS-04-1XX,"MS-04-1 / Complete Section A Works",7112,"CCGTD1_IPS",TT_FinMile,"58645",-,-,-,100,TK_Complete,23/10/2017,08/09/2017,23/10/2017,08/09/2017,"","","","",116,147,116,147,27,34,27,34,13,,"CCGT D1_Integrated Programme Schedule;CIVILS;GENERAL & PRELIMINARIES;Salient Contract Dates;Payment Milestones;MS04 - Aug 2017",0,0,0.0,0.0,0.0,0,1.0,0.0000812387,0.0,0.0,0.0,0.0,0.0,0.0,1.0,0.0
1.4.5.3.1.23-2,MS_04XX,"MS-04 / Achievement of Milestone Requirements",7112,"CCGTD1_IPS",TT_FinMile,"58645",-,-,-,100,TK_Complete,26/05/2018,04/04/2018,26/05/2018,04/04/2018,"","","","",147,176,147,176,34,41,34,41,28,,"CCGT D1_Integrated Programme Schedule;CIVILS;GENERAL & PRELIMINARIES;Salient Contract Dates;Payment Milestones;MS04 - Aug 2017",0,0,0.0,0.0,0.0,0,1.0,0.0000812387,0.0,0.0,0.0,0.0,0.0,0.0,1.0,0.0
1.4.5.3.1.23-3,MS-04-2XX,"MS-04-2 / Award Subcontract - Excavation & ELS",7112,"CCGTD1_IPS",TT_FinMile,"58645",-,-,-,100,TK_Complete,15/12/2017,22/12/2017,15/12/2017,22/12/2017,"","","","",124,162,124,162,29,37,29,37,16,,"CCGT D1_Integrated Programme Schedule;CIVILS;GENERAL & PRELIMINARIES;Salient Contract Dates;Payment Milestones;MS04 - Aug 2017",0,0,0.0,0.0,0.0,0,1.0,0.0000812387,0.0,0.0,0.0,0.0,0.0,0.0,1.0,0.0
1.4.5.3.1.23-4,MS-04-3XX,"MS-04-3 / Award Subcontract - Grouting and Sheet / Pipe Piling",7112,"CCGTD1_IPS",TT_FinMile,"58645",-,-,-,100,TK_Complete,28/08/2017,26/08/2017,28/08/2017,26/08/2017,"","","","",108,145,108,145,25,33,25,33,11,,"CCGT D1_Integrated Programme Schedule;CIVILS;GENERAL & PRELIMINARIES;Salient Contract Dates;Payment Milestones;MS04 - Aug 2017",0,0,0.0,0.0,0.0,0,1.0,0.0000812387,0.0,0.0,0.0,0.0,0.0,0.0,1.0,0.0
1.4.5.3.1.23-5,MS-04-4XX,"MS-04-4 / Award Subcontract - Steel Structures & Heaving Lifting",7112,"CCGTD1_IPS",TT_FinMile,"58645",-,-,-,100,TK_Complete,24/10/2017,24/10/2017,24/10/2017,24/10/2017,"","","","",116,153,116,153,27,35,27,35,13,,"CCGT D1_Integrated Programme Schedule;CIVILS;GENERAL & PRELIMINARIES;Salient Contract Dates;Payment Milestones;MS04 - Aug 2017",0,0,0.0,0.0,0.0,0,1.0,0.0000812387,0.0,0.0,0.0,0.0,0.0,0.0,1.0,0.0
1.4.5.3.1.23-6,MS-04-5XX,"MS-04-5 / Award Subcontract - Standing Seam Roof, Aluminium Cladding & Curtain Wall",7112,"CCGTD1_IPS",TT_FinMile,"58645",-,-,-,100,TK_Complete,23/04/2018,20/12/2017,23/04/2018,20/12/2017,"","","","",142,161,142,161,33,37,33,37,25,,"CCGT D1_Integrated Programme Schedule;CIVILS;GENERAL & PRELIMINARIES;Salient Contract Dates;Payment Milestones;MS04 - Aug 2017",0,0,0.0,0.0,0.0,0,1.0,0.0000812387,0.0,0.0,0.0,0.0,0.0,0.0,1.0,0.0
1.4.5.3.1.23-7,MS-04-6XX,"MS-04-6 / Award Subcontract - CWP Installation",7112,"CCGTD1_IPS",TT_FinMile,"58645",-,-,-,100,TK_Complete,26/05/2018,04/04/2018,26/05/2018,04/04/2018,"","","","",147,176,147,176,34,41,34,41,28,,"CCGT D1_Integrated Programme Schedule;CIVILS;GENERAL & PRELIMINARIES;Salient Contract Dates;Payment Milestones;MS04 - Aug 2017",0,0,0.0,0.0,0.0,0,1.0,0.0000812387,0.0,0.0,0.0,0.0,0.0,0.0,1.0,0.0
1.4.5.3.1.23-8,MS-04-7XX,"MS-04-7 / Issue Purchase Order - CW Pipes",7112,"CCGTD1_IPS",TT_FinMile,"58645",-,-,-,100,TK_Complete,23/04/2018,25/01/2018,23/04/2018,25/01/2018,"","","","",142,166,142,166,33,38,33,38,25,,"CCGT D1_Integrated Programme Schedule;CIVILS;GENERAL & PRELIMINARIES;Salient Contract Dates;Payment Milestones;MS04 - Aug 2017",0,0,0.0,0.0,0.0,0,1.0,0.0000812387,0.0,0.0,0.0,0.0,0.0,0.0,1.0,0.0
1.4.5.3.1.23-9,MS-04-8XX,"MS-04-8 / Award Subcontract - Building Services",7112,"CCGTD1_IPS",TT_FinMile,"58645",-,-,-,100,TK_Complete,23/04/2018,20/02/2018,23/04/2018,20/02/2018,"","","","",142,170,142,170,33,39,33,39,25,,"CCGT D1_Integrated Programme Schedule;CIVILS;GENERAL & PRELIMINARIES;Salient Contract Dates;Payment Milestones;MS04 - Aug 2017",0,0,0.0,0.0,0.0,0,1.0,0.0000812387,0.0,0.0,0.0,0.0,0.0,0.0,1.0,0.0
1.4.5.3.1.24,58644,"MS03 - July 2017",7112,"CCGTD1_IPS",WBS,"58641",,,,100,Complete,15/08/2017,20/07/2017,23/04/2018,05/12/2017,,,,,106,139,142,159,24,32,33,37,,,"CCGT D1_Integrated Programme Schedule;CIVILS;GENERAL & PRELIMINARIES;Salient Contract Dates;Payment Milestones"
1.4.5.3.1.24-1,MS-03-1XX,"MS-03-1 / Submit to CLP Temp. Works for Shaft A, Pump Station, Diversion Culvert (Excav. & ELS)",7112,"CCGTD1_IPS",TT_FinMile,"58644",-,-,-,100,TK_Complete,29/11/2017,05/12/2017,29/11/2017,05/12/2017,"","","","",122,159,122,159,28,37,28,37,15,,"CCGT D1_Integrated Programme Schedule;CIVILS;GENERAL & PRELIMINARIES;Salient Contract Dates;Payment Milestones;MS03 - July 2017",0,0,0.0,0.0,0.0,0,1.0,0.0000812387,0.0,0.0,0.0,0.0,0.0,0.0,1.0,0.0
1.4.5.3.1.24-2,MS-03-2XX,"MS-03-2 / Submit to CLP Temp. Works for Shaft E & Discharge Culvert (Wall, Excav. & ELS)",7112,"CCGTD1_IPS",TT_FinMile,"58644",-,-,-,100,TK_Complete,15/08/2017,20/07/2017,15/08/2017,20/07/2017,"","","","",106,139,106,139,24,32,24,32,10,,"CCGT D1_Integrated Programme Schedule;CIVILS;GENERAL & PRELIMINARIES;Salient Contract Dates;Payment Milestones;MS03 - July 2017",0,0,0.0,0.0,0.0,0,1.0,0.0000812387,0.0,0.0,0.0,0.0,0.0,0.0,1.0,0.0
1.4.5.3.1.24-3,MS-03-3XX,"MS-03-3 / Submit to CLP Temp. Bulkhead Design for Outfall Apron Modification",7112,"CCGTD1_IPS",TT_FinMile,"58644",-,-,-,100,TK_Complete,06/01/2018,16/11/2017,06/01/2018,16/11/2017,"","","","",127,156,127,156,29,36,29,36,16,,"CCGT D1_Integrated Programme Schedule;CIVILS;GENERAL & PRELIMINARIES;Salient Contract Dates;Payment Milestones;MS03 - July 2017",0,0,0.0,0.0,0.0,0,1.0,0.0000812387,0.0,0.0,0.0,0.0,0.0,0.0,1.0,0.0
1.4.5.3.1.24-4,MS_03XX,"MS-03 / Achievement of Milestone Requirements",7112,"CCGTD1_IPS",TT_FinMile,"58644",-,-,-,100,TK_Complete,23/04/2018,16/11/2017,23/04/2018,16/11/2017,"","","","",142,156,142,156,33,36,33,36,25,,"CCGT D1_Integrated Programme Schedule;CIVILS;GENERAL & PRELIMINARIES;Salient Contract Dates;Payment Milestones;MS03 - July 2017",0,0,0.0,0.0,0.0,0,1.0,0.0000812387,0.0,0.0,0.0,0.0,0.0,0.0,1.0,0.0
1.4.5.3.1.25,58643,"MS02 - July 2017",7112,"CCGTD1_IPS",WBS,"58641",,,,100,Complete,15/06/2017,15/06/2017,07/12/2017,06/12/2017,,,,,98,134,123,159,22,31,28,37,,,"CCGT D1_Integrated Programme Schedule;CIVILS;GENERAL & PRELIMINARIES;Salient Contract Dates;Payment Milestones"
1.4.5.3.1.25-1,MS-02-1XX,"MS-02-1 / Excute Articles of Agreement",7112,"CCGTD1_IPS",TT_FinMile,"58643",-,-,-,100,TK_Complete,07/12/2017,06/12/2017,07/12/2017,06/12/2017,"","","","",123,159,123,159,28,37,28,37,15,,"CCGT D1_Integrated Programme Schedule;CIVILS;GENERAL & PRELIMINARIES;Salient Contract Dates;Payment Milestones;MS02 - July 2017",0,0,0.0,0.0,0.0,0,1.0,0.0000812387,0.0,0.0,0.0,0.0,0.0,0.0,1.0,0.0
1.4.5.3.1.25-2,MS-02-2XX,"MS-02-2 / Submit to CLP Temp. Works for Shaft A, Pump Station, Diversion Culvert (Wall Only)",7112,"CCGTD1_IPS",TT_FinMile,"58643",-,-,-,100,TK_Complete,02/11/2017,16/11/2017,02/11/2017,16/11/2017,"","","","",118,156,118,156,27,36,27,36,13,,"CCGT D1_Integrated Programme Schedule;CIVILS;GENERAL & PRELIMINARIES;Salient Contract Dates;Payment Milestones;MS02 - July 2017",0,0,0.0,0.0,0.0,0,1.0,0.0000812387,0.0,0.0,0.0,0.0,0.0,0.0,1.0,0.0
1.4.5.3.1.25-3,MS-02-3XX,"MS-02-3 / Submit to CLP Temp. Works for Shaft D (Wall, Excav & ELS)",7112,"CCGTD1_IPS",TT_FinMile,"58643",-,-,-,100,TK_Complete,15/06/2017,15/06/2017,15/06/2017,15/06/2017,"","","","",98,134,98,134,22,31,22,31,7,,"CCGT D1_Integrated Programme Schedule;CIVILS;GENERAL & PRELIMINARIES;Salient Contract Dates;Payment Milestones;MS02 - July 2017",0,0,0.0,0.0,0.0,0,1.0,0.0000812387,0.0,0.0,0.0,0.0,0.0,0.0,1.0,0.0
1.4.5.3.1.25-4,MS-02-4XX,"MS-02-4 / Submit to CLP Temp. Works for Shaft F (Skin Wall) & Double Pipe Trench (Southern Sheet Pile)",7112,"CCGTD1_IPS",TT_FinMile,"58643",-,-,-,100,TK_Complete,21/06/2017,21/06/2017,21/06/2017,21/06/2017,"","","","",99,135,99,135,23,31,23,31,7,,"CCGT D1_Integrated Programme Schedule;CIVILS;GENERAL & PRELIMINARIES;Salient Contract Dates;Payment Milestones;MS02 - July 2017",0,0,0.0,0.0,0.0,0,1.0,0.0000812387,0.0,0.0,0.0,0.0,0.0,0.0,1.0,0.0
1.4.5.3.1.25-5,MS-02-5XX,"MS-02-5 / Submit to CLP Temp. Works for Shaft F & Doble Pipe Trench (Open Cut Alternative)",7112,"CCGTD1_IPS",TT_FinMile,"58643",-,-,-,100,TK_Complete,21/06/2017,21/06/2017,21/06/2017,21/06/2017,"","","","",99,135,99,135,23,31,23,31,7,,"CCGT D1_Integrated Programme Schedule;CIVILS;GENERAL & PRELIMINARIES;Salient Contract Dates;Payment Milestones;MS02 - July 2017",0,0,0.0,0.0,0.0,0,1.0,0.0000812387,0.0,0.0,0.0,0.0,0.0,0.0,1.0,0.0
1.4.5.3.1.25-6,MS-02-6XX,"MS-02-6 / Submit to CLP Temp. Works for Power Island (Open Cut Amendment)",7112,"CCGTD1_IPS",TT_FinMile,"58643",-,-,-,100,TK_Complete,21/06/2017,21/06/2017,21/06/2017,21/06/2017,"","","","",99,135,99,135,23,31,23,31,7,,"CCGT D1_Integrated Programme Schedule;CIVILS;GENERAL & PRELIMINARIES;Salient Contract Dates;Payment Milestones;MS02 - July 2017",0,0,0.0,0.0,0.0,0,1.0,0.0000812387,0.0,0.0,0.0,0.0,0.0,0.0,1.0,0.0
1.4.5.3.1.25-7,MS_02XX,"MS-02 / Achievement of Milestone Requirements",7112,"CCGTD1_IPS",TT_FinMile,"58643",-,-,-,100,TK_Complete,28/08/2017,08/08/2017,28/08/2017,08/08/2017,"","","","",108,142,108,142,25,33,25,33,11,,"CCGT D1_Integrated Programme Schedule;CIVILS;GENERAL & PRELIMINARIES;Salient Contract Dates;Payment Milestones;MS02 - July 2017",0,0,0.0,0.0,0.0,0,1.0,0.0000812387,0.0,0.0,0.0,0.0,0.0,0.0,1.0,0.0
1.4.5.3.1.26,58642,"MS01 - May 2017",7112,"CCGTD1_IPS",WBS,"58641",,,,100,Complete,29/05/2017,29/05/2017,31/05/2017,31/05/2017,,,,,95,132,96,132,22,30,22,30,,,"CCGT D1_Integrated Programme Schedule;CIVILS;GENERAL & PRELIMINARIES;Salient Contract Dates;Payment Milestones"
1.4.5.3.1.26-1,MS-01-1XX,"MS-01-1 / Execute Contract",7112,"CCGTD1_IPS",TT_FinMile,"58642",-,-,-,100,TK_Complete,29/05/2017,29/05/2017,29/05/2017,29/05/2017,"","","","",95,132,95,132,22,30,22,30,6,,"CCGT D1_Integrated Programme Schedule;CIVILS;GENERAL & PRELIMINARIES;Salient Contract Dates;Payment Milestones;MS01 - May 2017",0,0,0.0,0.0,0.0,0,1.0,0.0000812387,0.0,0.0,0.0,0.0,0.0,0.0,1.0,0.0
1.4.5.3.1.26-2,MS_01XX,"MS-01 / Achievement of Milestone Requirements",7112,"CCGTD1_IPS",TT_FinMile,"58642",-,-,-,100,TK_Complete,31/05/2017,31/05/2017,31/05/2017,31/05/2017,"","","","",96,132,96,132,22,30,22,30,6,,"CCGT D1_Integrated Programme Schedule;CIVILS;GENERAL & PRELIMINARIES;Salient Contract Dates;Payment Milestones;MS01 - May 2017",0,0,0.0,0.0,0.0,0,1.0,0.0000812387,0.0,0.0,0.0,0.0,0.0,0.0,1.0,0.0
1.4.5.3.2,58640,"Handover Dates Not Under Any Sectional Completion (SA1)",7112,"CCGTD1_IPS",WBS,"58628",,,,100,Complete,26/01/2019,18/12/2018,30/01/2020,12/03/2020,,,,,182,213,235,277,42,49,54,64,,,"CCGT D1_Integrated Programme Schedule;CIVILS;GENERAL & PRELIMINARIES;Salient Contract Dates"
1.4.5.3.2-1,TH3.1A,"North Elevation water tight (GL5-10)",7112,"CCGTD1_IPS",TT_FinMile,"58640",-,-,-,100,TK_Complete,26/01/2019,19/01/2019,26/01/2019,19/01/2019,"MCGZ1030 FS","MCGZ1030","","",182,218,182,218,42,50,42,50,44,,"CCGT D1_Integrated Programme Schedule;CIVILS;GENERAL & PRELIMINARIES;Salient Contract Dates;Handover Dates Not Under Any Sectional Completion (SA1)",1,0,0.0,0.0,0.0004069176,0,1.0,0.0000812387,0.0068493151,0.0,0.0,0.0,0.0012870013,0.0,1.0,0.0
1.4.5.3.2-2,TH3.2A,"West Elevation water tight (GL10) - Elect Rooms",7112,"CCGTD1_IPS",TT_FinMile,"58640",-,-,-,100,TK_Complete,31/03/2019,04/02/2019,31/03/2019,04/02/2019,"","","","",191,220,191,220,44,51,44,51,49,,"CCGT D1_Integrated Programme Schedule;CIVILS;GENERAL & PRELIMINARIES;Salient Contract Dates;Handover Dates Not Under Any Sectional Completion (SA1)",0,0,0.0,0.0,0.0,0,1.0,0.0000812387,0.0,0.0,0.0,0.0,0.0,0.0,1.0,0.0
1.4.5.3.2-3,1.1,"Urea Plant Area",7112,"CCGTD1_IPS",TT_FinMile,"58640",-,-,-,100,TK_Complete,26/01/2019,11/01/2019,26/01/2019,11/01/2019,"FTP30010 FS","FTP30010","","",182,217,182,217,42,50,42,50,44,,"CCGT D1_Integrated Programme Schedule;CIVILS;GENERAL & PRELIMINARIES;Salient Contract Dates;Handover Dates Not Under Any Sectional Completion (SA1)",1,0,0.0,0.0,0.0024415056,0,1.0,0.0000812387,0.0068493151,0.0,0.0,0.0,0.0077220077,0.0,1.0,0.0
1.4.5.3.2-4,2.1,"Remaining Feedwater Pump Foundation",7112,"CCGTD1_IPS",TT_FinMile,"58640",-,-,-,100,TK_Complete,26/01/2019,31/12/2018,26/01/2019,31/12/2018,"FWPT0040 FS","FWPT0040","","",182,215,182,215,42,50,42,50,44,,"CCGT D1_Integrated Programme Schedule;CIVILS;GENERAL & PRELIMINARIES;Salient Contract Dates;Handover Dates Not Under Any Sectional Completion (SA1)",1,0,0.0,0.0,0.0002034588,0,1.0,0.0000812387,0.0068493151,0.0,0.0,0.0,0.0006435006,0.0,1.0,0.0
1.4.5.3.2-5,2.2,"Condensate Recirculating Pump Foundation",7112,"CCGTD1_IPS",TT_FinMile,"58640",-,-,-,100,TK_Complete,26/01/2019,31/12/2018,26/01/2019,31/12/2018,"FWPT0040 FS","FWPT0040","","",182,215,182,215,42,50,42,50,44,,"CCGT D1_Integrated Programme Schedule;CIVILS;GENERAL & PRELIMINARIES;Salient Contract Dates;Handover Dates Not Under Any Sectional Completion (SA1)",1,0,0.0,0.0,0.0002034588,0,1.0,0.0000812387,0.0068493151,0.0,0.0,0.0,0.0006435006,0.0,1.0,0.0
1.4.5.3.2-6,2.3,"Remaining HRSG West Foundation",7112,"CCGTD1_IPS",TT_FinMile,"58640",-,-,-,100,TK_Complete,26/01/2019,31/12/2018,26/01/2019,31/12/2018,"FWPT0040 FS","FWPT0040","","",182,215,182,215,42,50,42,50,44,,"CCGT D1_Integrated Programme Schedule;CIVILS;GENERAL & PRELIMINARIES;Salient Contract Dates;Handover Dates Not Under Any Sectional Completion (SA1)",1,0,0.0,0.0,0.0002034588,0,1.0,0.0000812387,0.0068493151,0.0,0.0,0.0,0.0006435006,0.0,1.0,0.0
1.4.5.3.2-7,2.4,"Diesel Generator Foundation (Shaft F Area)",7112,"CCGTD1_IPS",TT_FinMile,"58640",-,-,-,100,TK_Complete,01/08/2019,02/07/2019,01/08/2019,02/07/2019,"RWPR0230 FS","RWPR0230","","",209,241,209,241,48,56,48,56,67,,"CCGT D1_Integrated Programme Schedule;CIVILS;GENERAL & PRELIMINARIES;Salient Contract Dates;Handover Dates Not Under Any Sectional Completion (SA1)",1,0,0.0,0.0,0.0032553408,0,1.0,0.0000812387,0.0068493151,0.0,0.0,0.0,0.0102960103,0.0,1.0,0.0
1.4.5.3.2-8,2.5,"Gas Preheating Skid Area Foundation",7112,"CCGTD1_IPS",TT_FinMile,"58640",-,-,-,100,TK_Complete,05/08/2019,04/05/2019,05/08/2019,04/05/2019,"GFFE0010 FF","GFFE0010","","",209,233,209,233,48,54,48,54,69,,"CCGT D1_Integrated Programme Schedule;CIVILS;GENERAL & PRELIMINARIES;Salient Contract Dates;Handover Dates Not Under Any Sectional Completion (SA1)",1,0,0.0,0.0,0.0069175992,0,1.0,0.0000812387,0.0068493151,0.0,0.0,0.0,0.0218790219,0.0,1.0,0.0
1.4.5.3.2-9,3.6,"Main CW collection piece (UPY00Y) and Cooling Water Pump Foundations (PxB00Y)",7112,"CCGTD1_IPS",TT_FinMile,"58640",-,-,-,100,TK_Complete,09/04/2019,07/03/2019,09/04/2019,07/03/2019,"PR010010 FS,CCWS0010 FS","PR010010,CCWS0010","","",192,224,192,224,45,52,45,52,53,,"CCGT D1_Integrated Programme Schedule;CIVILS;GENERAL & PRELIMINARIES;Salient Contract Dates;Handover Dates Not Under Any Sectional Completion (SA1)",2,0,0.0,0.0,0.013224822,0,1.0,0.0000812387,0.0136986301,0.0,0.0,0.0,0.0418275418,0.0,1.0,0.0
1.4.5.3.2-10,3.7,"Rain Collection Pump Station Structural Completion (Top Slab)",7112,"CCGTD1_IPS",TT_FinMile,"58640",-,-,-,100,TK_Complete,26/01/2019,07/01/2019,26/01/2019,07/01/2019,"RWPR0210 FS","RWPR0210","","",182,216,182,216,42,50,42,50,44,,"CCGT D1_Integrated Programme Schedule;CIVILS;GENERAL & PRELIMINARIES;Salient Contract Dates;Handover Dates Not Under Any Sectional Completion (SA1)",1,0,0.0,0.0,0.0008138352,0,1.0,0.0000812387,0.0068493151,0.0,0.0,0.0,0.0025740026,0.0,1.0,0.0
1.4.5.3.2-11,4.1,"HRSG South Remaining Foundations  and Drainage",7112,"CCGTD1_IPS",TT_FinMile,"58640",-,-,-,100,TK_Complete,01/05/2019,12/04/2019,01/05/2019,12/04/2019,"FTP10005 FS","FTP10005","","",196,230,196,230,45,53,45,53,56,,"CCGT D1_Integrated Programme Schedule;CIVILS;GENERAL & PRELIMINARIES;Salient Contract Dates;Handover Dates Not Under Any Sectional Completion (SA1)",1,0,0.0,0.0,0.0004069176,0,1.0,0.0000812387,0.0068493151,0.0,0.0,0.0,0.0012870013,0.0,1.0,0.0
1.4.5.3.2-12,4.2,"HRSG East Remaining Foundation (incl. Fdn for Urea Decomposition Chamber)",7112,"CCGTD1_IPS",TT_FinMile,"58640",-,-,-,100,TK_Complete,01/08/2019,29/06/2019,01/08/2019,29/06/2019,"FTP10010 FS","FTP10010","","",209,241,209,241,48,56,48,56,67,,"CCGT D1_Integrated Programme Schedule;CIVILS;GENERAL & PRELIMINARIES;Salient Contract Dates;Handover Dates Not Under Any Sectional Completion (SA1)",1,0,0.0,0.0,0.0026449644,0,1.0,0.0000812387,0.0068493151,0.0,0.0,0.0,0.0083655084,0.0,1.0,0.0
1.4.5.3.2-13,TH1.1,"GL5-7 [Mechanical Annex] - Access for E&M",7112,"CCGTD1_IPS",TT_FinMile,"58640",-,-,-,100,TK_Complete,25/02/2019,18/12/2018,25/02/2019,18/12/2018,"THRF1480 FS","THRF1480","","",186,213,186,213,43,49,43,49,48,,"CCGT D1_Integrated Programme Schedule;CIVILS;GENERAL & PRELIMINARIES;Salient Contract Dates;Handover Dates Not Under Any Sectional Completion (SA1)",1,0,0.0,0.0,0.0364191251,0,1.0,0.0000812387,0.0068493151,0.0,0.0,0.0,0.1151866152,0.0,1.0,0.0
1.4.5.3.2-14,TH1.2,"GL7-10 [SwitchGear Block] - Concrete roof (under air intake) GL E-L poured",7112,"CCGTD1_IPS",TT_FinMile,"58640",-,-,-,100,TK_Complete,26/01/2019,29/12/2018,26/01/2019,29/12/2018,"THSS2430 FS","THSS2430","","",182,215,182,215,42,50,42,50,44,,"CCGT D1_Integrated Programme Schedule;CIVILS;GENERAL & PRELIMINARIES;Salient Contract Dates;Handover Dates Not Under Any Sectional Completion (SA1)",1,0,0.0,0.0,0.0032553408,0,1.0,0.0000812387,0.0068493151,0.0,0.0,0.0,0.0102960103,0.0,1.0,0.0
1.4.5.3.2-15,TH2.1,"Kalzip Roof",7112,"CCGTD1_IPS",TT_FinMile,"58640",-,-,-,100,TK_Complete,26/01/2019,29/12/2018,26/01/2019,29/12/2018,"THRF0620 FS","THRF0620","","",182,215,182,215,42,50,42,50,44,,"CCGT D1_Integrated Programme Schedule;CIVILS;GENERAL & PRELIMINARIES;Salient Contract Dates;Handover Dates Not Under Any Sectional Completion (SA1)",1,0,0.0,0.0,0.0002034588,0,1.0,0.0000812387,0.0068493151,0.0,0.0,0.0,0.0006435006,0.0,1.0,0.0
1.4.5.3.2-16,TH3.5,"Kalzip Roof (GL5-7)",7112,"CCGTD1_IPS",TT_FinMile,"58640",-,-,-,100,TK_Complete,26/01/2019,15/01/2019,26/01/2019,15/01/2019,"THRF5170 FS","THRF5170","","",182,217,182,217,42,50,42,50,44,,"CCGT D1_Integrated Programme Schedule;CIVILS;GENERAL & PRELIMINARIES;Salient Contract Dates;Handover Dates Not Under Any Sectional Completion (SA1)",1,0,0.0,0.0,0.0004069176,0,1.0,0.0000812387,0.0068493151,0.0,0.0,0.0,0.0012870013,0.0,1.0,0.0
1.4.5.3.2-17,TH4.1,"Turbine Hall Lift operational with EMSD lift certificate",7112,"CCGTD1_IPS",TT_FinMile,"58640",-,-,-,100,TK_Complete,30/01/2020,12/03/2020,30/01/2020,12/03/2020,"LIFT1020 FF,LIFT1050 FS","LIFT1020,LIFT1050","","",235,277,235,277,54,64,54,64,88,,"CCGT D1_Integrated Programme Schedule;CIVILS;GENERAL & PRELIMINARIES;Salient Contract Dates;Handover Dates Not Under Any Sectional Completion (SA1)",2,0,0.0,0.0,0.0032553408,0,1.0,0.0000812387,0.0136986301,0.0,0.0,0.0,0.0102960103,0.0,1.0,0.0
1.4.5.3.2-18,P1_Rooms,"Priority 1 Rooms",7112,"CCGTD1_IPS",TT_FinMile,"58640",-,-,-,100,TK_Complete,26/01/2019,01/01/2019,26/01/2019,01/01/2019,"","","","",182,215,182,215,42,50,42,50,44,,"CCGT D1_Integrated Programme Schedule;CIVILS;GENERAL & PRELIMINARIES;Salient Contract Dates;Handover Dates Not Under Any Sectional Completion (SA1)",0,0,0.0,0.0,0.0,0,1.0,0.0000812387,0.0,0.0,0.0,0.0,0.0,0.0,1.0,0.0
1.4.5.3.2-19,P2_Rooms,"Priority 2 Rooms",7112,"CCGTD1_IPS",TT_FinMile,"58640",-,-,-,100,TK_Complete,31/03/2019,05/02/2019,31/03/2019,05/02/2019,"","","","",191,220,191,220,44,51,44,51,49,,"CCGT D1_Integrated Programme Schedule;CIVILS;GENERAL & PRELIMINARIES;Salient Contract Dates;Handover Dates Not Under Any Sectional Completion (SA1)",0,0,0.0,0.0,0.0,0,1.0,0.0000812387,0.0,0.0,0.0,0.0,0.0,0.0,1.0,0.0
1.4.5.3.2-20,P3_Rooms,"Priority 3 Rooms",7112,"CCGTD1_IPS",TT_FinMile,"58640",-,-,-,100,TK_Complete,31/03/2019,30/03/2019,31/03/2019,30/03/2019,"BDWK0050 FF,BDWK0060 FF","BDWK0050,BDWK0060","","",191,228,191,228,44,53,44,53,49,,"CCGT D1_Integrated Programme Schedule;CIVILS;GENERAL & PRELIMINARIES;Salient Contract Dates;Handover Dates Not Under Any Sectional Completion (SA1)",2,0,0.0,0.0,0.0026449644,0,1.0,0.0000812387,0.0136986301,0.0,0.0,0.0,0.0083655084,0.0,1.0,0.0
1.4.5.3.3,58639,"Completion of Section H Works (SA1) - 31 Dec 2019",7112,"CCGTD1_IPS",WBS,"58628",,,,100,Complete,22/02/2020,08/09/2020,22/02/2020,08/09/2020,,,,,238,303,238,303,55,70,55,70,,,"CCGT D1_Integrated Programme Schedule;CIVILS;GENERAL & PRELIMINARIES;Salient Contract Dates"
1.4.5.3.3-1,SW1.1,"Completion of all site works",7112,"CCGTD1_IPS",TT_FinMile,"58639",-,-,-,100,TK_Complete,22/02/2020,08/09/2020,22/02/2020,08/09/2020,"DEF_WK10 FS,PPS10410 FF,ICM10250 FF,IBC10360 FF,SFE30180 FF,DBC10160 FF,OAM10180 FF,DPT30210 FF,SFF30340 FF,MCGZ2090 FF,MCGZ2200 FF,MCGZ1040 FF,MCGZ2100 FF,MCGZ2210 FF,BDWK0030 FF,BDWK0040 FF,BDWK0100 FF,BDWK0110 FF,THEL0012 FF,THFS0140 FF,DEF_WK11 FF,DEF_WK06 FF,GFFE0030 FF,PTA10020 FF,LAND0010 FF,CLPCCR10 FF,FTP20040 FF,EXCL0050 FF,THAC0080 FF,THAC0060 FF,THAC0015 FF,THEL1040 FF,THEL1030 FF,THEL1020 FF,MCGZ0150 FF,DEF_WK08 FF,DPT40050 FF,PPS10420 FF,PPS10430 FF,THFS0130 FF,EXCL0020 FF,ICM10200 FF,SFF30320 FF,IRRI0015 FF,IRRI0030 FF,IRRI0020 FF","DEF_WK10,PPS10410,ICM10250,IBC10360,SFE30180,DBC10160,OAM10180,DPT30210,SFF30340,MCGZ2090,MCGZ2200,MCGZ1040,MCGZ2100,MCGZ2210,BDWK0030,BDWK0040,BDWK0100,BDWK0110,THEL0012,THFS0140,DEF_WK11,DEF_WK06,GFFE0030,PTA10020,LAND0010,CLPCCR10,FTP20040,EXCL0050,THAC0080,THAC0060,THAC0015,THEL1040,THEL1030,THEL1020,MCGZ0150,DEF_WK08,DPT40050,PPS10420,PPS10430,THFS0130,EXCL0020,ICM10200,SFF30320,IRRI0015,IRRI0030,IRRI0020","","",238,303,238,303,55,70,55,70,89,,"CCGT D1_Integrated Programme Schedule;CIVILS;GENERAL & PRELIMINARIES;Salient Contract Dates;Completion of Section H Works (SA1) - 31 Dec 2019",46,0,0.0,0.0,0.1686673449,0,1.0,0.0000812387,0.3150684932,0.0,0.0,0.0,0.5334620335,0.0,1.0,0.0
1.4.5.3.4,58638,"Completion of Section G Works (SA1) - 31 Mar 2019",7112,"CCGTD1_IPS",WBS,"58628",,,,100,Complete,26/01/2019,31/12/2018,01/01/2020,25/10/2019,,,,,182,215,231,258,42,50,53,60,,,"CCGT D1_Integrated Programme Schedule;CIVILS;GENERAL & PRELIMINARIES;Salient Contract Dates"
1.4.5.3.4-1,KD_G07bXX,"G7b - Deferred Works Item 09 (p.r.t.  Act ID DEF_WK09)",7112,"CCGTD1_IPS",TT_FinMile,"58638",-,-,-,100,TK_Complete,26/01/2019,31/12/2018,26/01/2019,31/12/2018,"","","","",182,215,182,215,42,50,42,50,44,,"CCGT D1_Integrated Programme Schedule;CIVILS;GENERAL & PRELIMINARIES;Salient Contract Dates;Completion of Section G Works (SA1) - 31 Mar 2019",0,0,0.0,0.0,0.0,0,1.0,0.0000812387,0.0,0.0,0.0,0.0,0.0,0.0,1.0,0.0
1.4.5.3.4-2,TH3.3,"West Elevation (GL7)",7112,"CCGTD1_IPS",TT_FinMile,"58638",-,-,-,100,TK_Complete,01/01/2020,25/10/2019,01/01/2020,25/10/2019,"MCGZ1120 FS,MCGZ1190 FS,MCGZ1150 FF","MCGZ1120,MCGZ1190,MCGZ1150","","",231,258,231,258,53,60,53,60,86,,"CCGT D1_Integrated Programme Schedule;CIVILS;GENERAL & PRELIMINARIES;Salient Contract Dates;Completion of Section G Works (SA1) - 31 Mar 2019",3,0,0.0,0.0,0.0032553408,0,1.0,0.0000812387,0.0205479452,0.0,0.0,0.0,0.0102960103,0.0,1.0,0.0
1.4.5.3.4-3,TH3.3A,"West Elevation water tight (GL7)",7112,"CCGTD1_IPS",TT_FinMile,"58638",-,-,-,100,TK_Complete,31/03/2019,31/03/2019,31/03/2019,31/03/2019,"MCGZ1170 FS","MCGZ1170","","",191,228,191,228,44,53,44,53,49,,"CCGT D1_Integrated Programme Schedule;CIVILS;GENERAL & PRELIMINARIES;Salient Contract Dates;Completion of Section G Works (SA1) - 31 Mar 2019",1,0,0.0,0.0,0.0004069176,0,1.0,0.0000812387,0.0068493151,0.0,0.0,0.0,0.0012870013,0.0,1.0,0.0
1.4.5.3.4-4,TH3.4,"South Elevation (GL5-10)",7112,"CCGTD1_IPS",TT_FinMile,"58638",-,-,-,100,TK_Complete,01/05/2019,29/03/2019,01/05/2019,29/03/2019,"MCGZ1105 FS","MCGZ1105","","",196,228,196,228,45,53,45,53,56,,"CCGT D1_Integrated Programme Schedule;CIVILS;GENERAL & PRELIMINARIES;Salient Contract Dates;Completion of Section G Works (SA1) - 31 Mar 2019",1,0,0.0,0.0,0.0008138352,0,1.0,0.0000812387,0.0068493151,0.0,0.0,0.0,0.0025740026,0.0,1.0,0.0
1.4.5.3.4-5,TH3.4A,"South Elevation water tight (GL5-10)",7112,"CCGTD1_IPS",TT_FinMile,"58638",-,-,-,100,TK_Complete,31/03/2019,14/03/2019,31/03/2019,14/03/2019,"MCGZ1090 FS","MCGZ1090","","",191,225,191,225,44,52,44,52,49,,"CCGT D1_Integrated Programme Schedule;CIVILS;GENERAL & PRELIMINARIES;Salient Contract Dates;Completion of Section G Works (SA1) - 31 Mar 2019",1,0,0.0,0.0,0.0004069176,0,1.0,0.0000812387,0.0068493151,0.0,0.0,0.0,0.0012870013,0.0,1.0,0.0
1.4.5.3.5,58637,"Completion of Section F Works (SA1) - 28 Feb 2019",7112,"CCGTD1_IPS",WBS,"58628",,,,100,Complete,26/01/2019,14/11/2018,01/01/2020,21/10/2019,,,,,182,208,231,257,42,48,53,60,,,"CCGT D1_Integrated Programme Schedule;CIVILS;GENERAL & PRELIMINARIES;Salient Contract Dates"
1.4.5.3.5-1,KD_F02XX,"F2 - Complete Oil Contaminated Drainage System incl' external drainage, oil interceptor and pipe trenches",7112,"CCGTD1_IPS",TT_FinMile,"58637",-,-,-,100,TK_Complete,09/04/2019,14/02/2019,09/04/2019,14/02/2019,"","","","",192,221,192,221,45,51,45,51,53,,"CCGT D1_Integrated Programme Schedule;CIVILS;GENERAL & PRELIMINARIES;Salient Contract Dates;Completion of Section F Works (SA1) - 28 Feb 2019",0,0,0.0,0.0,0.0,0,1.0,0.0000812387,0.0,0.0,0.0,0.0,0.0,0.0,1.0,0.0
1.4.5.3.5-2,KD_F08eXX,"F8e - Deferred Works Item 07 (p.r.t.  Act ID DEF_WK07)",7112,"CCGTD1_IPS",TT_FinMile,"58637",-,-,-,100,TK_Complete,26/01/2019,15/12/2018,26/01/2019,15/12/2018,"","","","",182,213,182,213,42,49,42,49,44,,"CCGT D1_Integrated Programme Schedule;CIVILS;GENERAL & PRELIMINARIES;Salient Contract Dates;Completion of Section F Works (SA1) - 28 Feb 2019",0,0,0.0,0.0,0.0,0,1.0,0.0000812387,0.0,0.0,0.0,0.0,0.0,0.0,1.0,0.0
1.4.5.3.5-3,KD_F08bXX,"F8b - Deferred Works Item 03 (p.r.t.  Act ID DEF_WK03)",7112,"CCGTD1_IPS",TT_FinMile,"58637",-,-,-,100,TK_Complete,26/01/2019,14/11/2018,26/01/2019,14/11/2018,"","","","",182,208,182,208,42,48,42,48,44,,"CCGT D1_Integrated Programme Schedule;CIVILS;GENERAL & PRELIMINARIES;Salient Contract Dates;Completion of Section F Works (SA1) - 28 Feb 2019",0,0,0.0,0.0,0.0,0,1.0,0.0000812387,0.0,0.0,0.0,0.0,0.0,0.0,1.0,0.0
1.4.5.3.5-4,TH2.3,"Kalzip (Dog House & Curved Areas)",7112,"CCGTD1_IPS",TT_FinMile,"58637",-,-,-,100,TK_Complete,01/08/2019,14/06/2019,01/08/2019,14/06/2019,"THRF0630 FS","THRF0630","","",209,239,209,239,48,55,48,55,67,,"CCGT D1_Integrated Programme Schedule;CIVILS;GENERAL & PRELIMINARIES;Salient Contract Dates;Completion of Section F Works (SA1) - 28 Feb 2019",1,0,0.0,0.0,0.0002034588,0,1.0,0.0000812387,0.0068493151,0.0,0.0,0.0,0.0006435006,0.0,1.0,0.0
1.4.5.3.5-5,TH2.4,"West Elevation (GL5)",7112,"CCGTD1_IPS",TT_FinMile,"58637",-,-,-,100,TK_Complete,31/03/2019,28/02/2019,31/03/2019,28/02/2019,"MCGZ0120 FS","MCGZ0120","","",191,223,191,223,44,52,44,52,49,,"CCGT D1_Integrated Programme Schedule;CIVILS;GENERAL & PRELIMINARIES;Salient Contract Dates;Completion of Section F Works (SA1) - 28 Feb 2019",1,0,0.0,0.0,0.0004069176,0,1.0,0.0000812387,0.0068493151,0.0,0.0,0.0,0.0012870013,0.0,1.0,0.0
1.4.5.3.5-6,TH2.5,"East side elevation GL1",7112,"CCGTD1_IPS",TT_FinMile,"58637",-,-,-,100,TK_Complete,01/05/2019,30/04/2019,01/05/2019,30/04/2019,"MCGZ0050 FS,MCGZ2060 FS","MCGZ0050,MCGZ2060","","",196,232,196,232,45,54,45,54,56,,"CCGT D1_Integrated Programme Schedule;CIVILS;GENERAL & PRELIMINARIES;Salient Contract Dates;Completion of Section F Works (SA1) - 28 Feb 2019",2,0,0.0,0.0,0.0014242116,0,1.0,0.0000812387,0.0136986301,0.0,0.0,0.0,0.0045045045,0.0,1.0,0.0
1.4.5.3.5-7,TH2.6,"South Elevation (GL1-5)",7112,"CCGTD1_IPS",TT_FinMile,"58637",-,-,-,100,TK_Complete,31/03/2019,28/02/2019,31/03/2019,28/02/2019,"MCGZ0105 FS","MCGZ0105","","",191,223,191,223,44,52,44,52,49,,"CCGT D1_Integrated Programme Schedule;CIVILS;GENERAL & PRELIMINARIES;Salient Contract Dates;Completion of Section F Works (SA1) - 28 Feb 2019",1,0,0.0,0.0,0.0008138352,0,1.0,0.0000812387,0.0068493151,0.0,0.0,0.0,0.0025740026,0.0,1.0,0.0
1.4.5.3.5-8,TH3.1,"North Elevation (GL5-10)",7112,"CCGTD1_IPS",TT_FinMile,"58637",-,-,-,100,TK_Complete,01/05/2019,01/04/2019,01/05/2019,01/04/2019,"MCGZ2020 FS","MCGZ2020","","",196,228,196,228,45,53,45,53,56,,"CCGT D1_Integrated Programme Schedule;CIVILS;GENERAL & PRELIMINARIES;Salient Contract Dates;Completion of Section F Works (SA1) - 28 Feb 2019",1,0,0.0,0.0,0.0008138352,0,1.0,0.0000812387,0.0068493151,0.0,0.0,0.0,0.0025740026,0.0,1.0,0.0
1.4.5.3.5-9,TH3.2,"West Elevation (GL10)",7112,"CCGTD1_IPS",TT_FinMile,"58637",-,-,-,100,TK_Complete,01/08/2019,30/03/2019,01/08/2019,30/03/2019,"MCGZ2120 FS","MCGZ2120","","",209,228,209,228,48,53,48,53,67,,"CCGT D1_Integrated Programme Schedule;CIVILS;GENERAL & PRELIMINARIES;Salient Contract Dates;Completion of Section F Works (SA1) - 28 Feb 2019",1,0,0.0,0.0,0.0008138352,0,1.0,0.0000812387,0.0068493151,0.0,0.0,0.0,0.0025740026,0.0,1.0,0.0
1.4.5.3.5-10,TH3.6,"Kalzip Roof (GL7-10)",7112,"CCGTD1_IPS",TT_FinMile,"58637",-,-,-,100,TK_Complete,01/01/2020,21/10/2019,01/01/2020,21/10/2019,"THRF2480 FS","THRF2480","","",231,257,231,257,53,60,53,60,86,,"CCGT D1_Integrated Programme Schedule;CIVILS;GENERAL & PRELIMINARIES;Salient Contract Dates;Completion of Section F Works (SA1) - 28 Feb 2019",1,0,0.0,0.0,0.0372329603,0,1.0,0.0000812387,0.0068493151,0.0,0.0,0.0,0.1177606178,0.0,1.0,0.0
1.4.5.3.6,58636,"Completion of Section E Works (SA1) - 31 Jan 2019",7112,"CCGTD1_IPS",WBS,"58628",,,,100,Complete,26/11/2018,05/08/2018,31/03/2019,14/02/2019,,,,,173,194,191,221,40,45,44,51,,,"CCGT D1_Integrated Programme Schedule;CIVILS;GENERAL & PRELIMINARIES;Salient Contract Dates"
1.4.5.3.6-1,KD_E02XX,"E2 - Complete ALL outdoor pipe trenches including 10UEZ01, 10UEZ02 and 10UGZ",7112,"CCGTD1_IPS",TT_FinMile,"58636",-,-,-,100,TK_Complete,31/03/2019,14/02/2019,31/03/2019,14/02/2019,"","","","",191,221,191,221,44,51,44,51,49,,"CCGT D1_Integrated Programme Schedule;CIVILS;GENERAL & PRELIMINARIES;Salient Contract Dates;Completion of Section E Works (SA1) - 31 Jan 2019",0,0,0.0,0.0,0.0,0,1.0,0.0000812387,0.0,0.0,0.0,0.0,0.0,0.0,1.0,0.0
1.4.5.3.6-2,KD_E04XX,"E4 - Complete foundation & plinths for Fuel Gas Pruge Air, Gas Receiving Station, Fuel Gas Blending System",7112,"CCGTD1_IPS",TT_FinMile,"58636",-,-,-,100,TK_Complete,31/03/2019,29/01/2019,31/03/2019,29/01/2019,"","","","",191,219,191,219,44,51,44,51,49,,"CCGT D1_Integrated Programme Schedule;CIVILS;GENERAL & PRELIMINARIES;Salient Contract Dates;Completion of Section E Works (SA1) - 31 Jan 2019",0,0,0.0,0.0,0.0,0,1.0,0.0000812387,0.0,0.0,0.0,0.0,0.0,0.0,1.0,0.0
1.4.5.3.6-3,KD_E08XX,"E8 - Deferred Works Item 01 (p.r.t.  Act ID DEF_WK01)",7112,"CCGTD1_IPS",TT_FinMile,"58636",-,-,-,100,TK_Complete,26/11/2018,05/08/2018,26/11/2018,05/08/2018,"","","","",173,194,173,194,40,45,40,45,39,,"CCGT D1_Integrated Programme Schedule;CIVILS;GENERAL & PRELIMINARIES;Salient Contract Dates;Completion of Section E Works (SA1) - 31 Jan 2019",0,0,0.0,0.0,0.0,0,1.0,0.0000812387,0.0,0.0,0.0,0.0,0.0,0.0,1.0,0.0
1.4.5.3.6-4,TH1.3,"Turbine Hall all round inner skin (GL.1-5)",7112,"CCGTD1_IPS",TT_FinMile,"58636",-,-,-,100,TK_Complete,31/03/2019,31/01/2019,31/03/2019,31/01/2019,"MCGZ0020 FS,MCGZ0090 FS","MCGZ0020,MCGZ0090","","",191,219,191,219,44,51,44,51,49,,"CCGT D1_Integrated Programme Schedule;CIVILS;GENERAL & PRELIMINARIES;Salient Contract Dates;Completion of Section E Works (SA1) - 31 Jan 2019",2,0,0.0,0.0,0.0008138352,0,1.0,0.0000812387,0.0136986301,0.0,0.0,0.0,0.0025740026,0.0,1.0,0.0
1.4.5.3.6-5,TH2.2,"North Elevation (GL1-5)",7112,"CCGTD1_IPS",TT_FinMile,"58636",-,-,-,100,TK_Complete,31/03/2019,29/01/2019,31/03/2019,29/01/2019,"MCGZ1010 FS","MCGZ1010","","",191,219,191,219,44,51,44,51,49,,"CCGT D1_Integrated Programme Schedule;CIVILS;GENERAL & PRELIMINARIES;Salient Contract Dates;Completion of Section E Works (SA1) - 31 Jan 2019",1,0,0.0,0.0,0.0008138352,0,1.0,0.0000812387,0.0068493151,0.0,0.0,0.0,0.0025740026,0.0,1.0,0.0
1.4.5.3.7,58635,"Completion of Section D Works (SA1) - 14 Feb 2019",7112,"CCGTD1_IPS",WBS,"58628",,,,100,Complete,26/11/2018,17/08/2018,09/04/2019,04/03/2019,,,,,173,196,192,224,40,45,45,52,,,"CCGT D1_Integrated Programme Schedule;CIVILS;GENERAL & PRELIMINARIES;Salient Contract Dates"
1.4.5.3.7-1,KD_D04XX,"D4 - Construct Duct Bank between Switchgear Building and Generator Transformer Area",7112,"CCGTD1_IPS",TT_FinMile,"58635",-,-,-,100,TK_Complete,31/03/2019,12/02/2019,31/03/2019,12/02/2019,"","","","",191,221,191,221,44,51,44,51,49,,"CCGT D1_Integrated Programme Schedule;CIVILS;GENERAL & PRELIMINARIES;Salient Contract Dates;Completion of Section D Works (SA1) - 14 Feb 2019",0,0,0.0,0.0,0.0,0,1.0,0.0000812387,0.0,0.0,0.0,0.0,0.0,0.0,1.0,0.0
1.4.5.3.7-2,KD_D05XX,"D5 - Construct Boiler Blow Down Pit",7112,"CCGTD1_IPS",TT_FinMile,"58635",-,-,-,100,TK_Complete,26/11/2018,17/08/2018,26/11/2018,17/08/2018,"","","","",173,196,173,196,40,45,40,45,38,,"CCGT D1_Integrated Programme Schedule;CIVILS;GENERAL & PRELIMINARIES;Salient Contract Dates;Completion of Section D Works (SA1) - 14 Feb 2019",0,0,0.0,0.0,0.0,0,1.0,0.0000812387,0.0,0.0,0.0,0.0,0.0,0.0,1.0,0.0
1.4.5.3.7-3,KD_D06XX,"D6 - Complete foundations and plinths for ALL equipment, pipe bridge and sleeper way to the west of HRSG Area",7112,"CCGTD1_IPS",TT_FinMile,"58635",-,-,-,100,TK_Complete,26/01/2019,31/12/2018,26/01/2019,31/12/2018,"","","","",182,215,182,215,42,50,42,50,44,,"CCGT D1_Integrated Programme Schedule;CIVILS;GENERAL & PRELIMINARIES;Salient Contract Dates;Completion of Section D Works (SA1) - 14 Feb 2019",0,0,0.0,0.0,0.0,0,1.0,0.0000812387,0.0,0.0,0.0,0.0,0.0,0.0,1.0,0.0
1.4.5.3.7-4,KD_D08XX,"D8 - Complete foundations and plinths for LV Auxiliary Power Transformers",7112,"CCGTD1_IPS",TT_FinMile,"58635",-,-,-,100,TK_Complete,31/03/2019,04/02/2019,31/03/2019,04/02/2019,"","","","",191,220,191,220,44,51,44,51,49,,"CCGT D1_Integrated Programme Schedule;CIVILS;GENERAL & PRELIMINARIES;Salient Contract Dates;Completion of Section D Works (SA1) - 14 Feb 2019",0,0,0.0,0.0,0.0,0,1.0,0.0000812387,0.0,0.0,0.0,0.0,0.0,0.0,1.0,0.0
1.4.5.3.7-5,KD_D11XX,"D11 - Complete foundations and plinths for Close Cooling Water Structure",7112,"CCGTD1_IPS",TT_FinMile,"58635",-,-,-,100,TK_Complete,09/04/2019,04/03/2019,09/04/2019,04/03/2019,"","","","",192,224,192,224,45,52,45,52,53,,"CCGT D1_Integrated Programme Schedule;CIVILS;GENERAL & PRELIMINARIES;Salient Contract Dates;Completion of Section D Works (SA1) - 14 Feb 2019",0,0,0.0,0.0,0.0,0,1.0,0.0000812387,0.0,0.0,0.0,0.0,0.0,0.0,1.0,0.0
1.4.5.3.7-6,1.2,"Utilites Trench",7112,"CCGTD1_IPS",TT_FinMile,"58635",-,-,-,100,TK_Complete,31/03/2019,14/02/2019,31/03/2019,14/02/2019,"PTA10010 FS","PTA10010","","",191,221,191,221,44,51,44,51,49,,"CCGT D1_Integrated Programme Schedule;CIVILS;GENERAL & PRELIMINARIES;Salient Contract Dates;Completion of Section D Works (SA1) - 14 Feb 2019",1,0,0.0,0.0,0.0004069176,0,1.0,0.0000812387,0.0068493151,0.0,0.0,0.0,0.0012870013,0.0,1.0,0.0
1.4.5.3.7-7,1.3,"Gas Pipeline Trench",7112,"CCGTD1_IPS",TT_FinMile,"58635",-,-,-,100,TK_Complete,31/03/2019,14/02/2019,31/03/2019,14/02/2019,"PTA10010 FS","PTA10010","","",191,221,191,221,44,51,44,51,49,,"CCGT D1_Integrated Programme Schedule;CIVILS;GENERAL & PRELIMINARIES;Salient Contract Dates;Completion of Section D Works (SA1) - 14 Feb 2019",1,0,0.0,0.0,0.0004069176,0,1.0,0.0000812387,0.0068493151,0.0,0.0,0.0,0.0012870013,0.0,1.0,0.0
1.4.5.3.7-8,1.4,"Gas Blending Skid Area Foundation",7112,"CCGTD1_IPS",TT_FinMile,"58635",-,-,-,100,TK_Complete,31/03/2019,29/01/2019,31/03/2019,29/01/2019,"FTP20030 FS","FTP20030","","",191,219,191,219,44,51,44,51,49,,"CCGT D1_Integrated Programme Schedule;CIVILS;GENERAL & PRELIMINARIES;Salient Contract Dates;Completion of Section D Works (SA1) - 14 Feb 2019",1,0,0.0,0.0,0.0028484232,0,1.0,0.0000812387,0.0068493151,0.0,0.0,0.0,0.009009009,0.0,1.0,0.0
1.4.5.3.7-9,1.5,"Utilities Trench",7112,"CCGTD1_IPS",TT_FinMile,"58635",-,-,-,100,TK_Complete,31/03/2019,14/02/2019,31/03/2019,14/02/2019,"ODPT0010 FS","ODPT0010","","",191,221,191,221,44,51,44,51,49,,"CCGT D1_Integrated Programme Schedule;CIVILS;GENERAL & PRELIMINARIES;Salient Contract Dates;Completion of Section D Works (SA1) - 14 Feb 2019",1,0,0.0,0.0,0.003051882,0,1.0,0.0000812387,0.0068493151,0.0,0.0,0.0,0.0096525097,0.0,1.0,0.0
1.4.5.3.7-10,3.1,"Underground Cable Corridor incl. LV Transformer Fdn",7112,"CCGTD1_IPS",TT_FinMile,"58635",-,-,-,100,TK_Complete,31/03/2019,12/02/2019,31/03/2019,12/02/2019,"APTX0010 FS,DBSG0020 FS","APTX0010,DBSG0020","","",191,221,191,221,44,51,44,51,49,,"CCGT D1_Integrated Programme Schedule;CIVILS;GENERAL & PRELIMINARIES;Salient Contract Dates;Completion of Section D Works (SA1) - 14 Feb 2019",2,0,0.0,0.0,0.0026449644,0,1.0,0.0000812387,0.0136986301,0.0,0.0,0.0,0.0083655084,0.0,1.0,0.0
1.4.5.3.7-11,3.2,"Neutralization Pit",7112,"CCGTD1_IPS",TT_FinMile,"58635",-,-,-,100,TK_Complete,26/01/2019,31/12/2018,26/01/2019,31/12/2018,"DEF_WK09 FS","DEF_WK09","","",182,215,182,215,42,50,42,50,44,,"CCGT D1_Integrated Programme Schedule;CIVILS;GENERAL & PRELIMINARIES;Salient Contract Dates;Completion of Section D Works (SA1) - 14 Feb 2019",1,0,0.0,0.0,0.0002034588,0,1.0,0.0000812387,0.0068493151,0.0,0.0,0.0,0.0006435006,0.0,1.0,0.0
1.4.5.3.7-12,3.3a,"Generator Transformer Foundation",7112,"CCGTD1_IPS",TT_FinMile,"58635",-,-,-,100,TK_Complete,04/02/2019,25/01/2019,04/02/2019,25/01/2019,"GNTX0030 FS,GNTX0040 FF","GNTX0030,GNTX0040","","",183,219,183,219,42,51,42,51,46,,"CCGT D1_Integrated Programme Schedule;CIVILS;GENERAL & PRELIMINARIES;Salient Contract Dates;Completion of Section D Works (SA1) - 14 Feb 2019",2,0,0.0,0.0,0.0130213632,0,1.0,0.0000812387,0.0136986301,0.0,0.0,0.0,0.0411840412,0.0,1.0,0.0
1.4.5.3.7-13,3.3b,"Generator Transformer Blast Wall",7112,"CCGTD1_IPS",TT_FinMile,"58635",-,-,-,100,TK_Complete,09/04/2019,12/02/2019,09/04/2019,12/02/2019,"GNTX0050 FS","GNTX0050","","",192,221,192,221,45,51,45,51,53,,"CCGT D1_Integrated Programme Schedule;CIVILS;GENERAL & PRELIMINARIES;Salient Contract Dates;Completion of Section D Works (SA1) - 14 Feb 2019",1,0,0.0,0.0,0.013224822,0,1.0,0.0000812387,0.0068493151,0.0,0.0,0.0,0.0418275418,0.0,1.0,0.0
1.4.5.3.7-14,3.5,"Unit Transformer Foundation",7112,"CCGTD1_IPS",TT_FinMile,"58635",-,-,-,100,TK_Complete,31/03/2019,04/02/2019,31/03/2019,04/02/2019,"EV039250 FF","EV039250","","",191,220,191,220,44,51,44,51,49,,"CCGT D1_Integrated Programme Schedule;CIVILS;GENERAL & PRELIMINARIES;Salient Contract Dates;Completion of Section D Works (SA1) - 14 Feb 2019",1,0,0.0,0.0,0.0012207528,0,1.0,0.0000812387,0.0068493151,0.0,0.0,0.0,0.0038610039,0.0,1.0,0.0
1.4.5.3.7-15,3.4,"Excitation Transfomer Foundation",7112,"CCGTD1_IPS",TT_FinMile,"58635",-,-,-,100,TK_Complete,31/03/2019,30/01/2019,31/03/2019,30/01/2019,"EV039330 FS","EV039330","","",191,219,191,219,44,51,44,51,49,,"CCGT D1_Integrated Programme Schedule;CIVILS;GENERAL & PRELIMINARIES;Salient Contract Dates;Completion of Section D Works (SA1) - 14 Feb 2019",1,0,0.0,0.0,0.0006103764,0,1.0,0.0000812387,0.0068493151,0.0,0.0,0.0,0.0019305019,0.0,1.0,0.0
1.4.5.3.8,58634,"Completion of Section C Works (SA1) - 15 Sep 2019",7112,"CCGTD1_IPS",WBS,"58628",,,,100,Complete,03/09/2018,31/08/2018,01/01/2020,24/12/2019,,,,,161,198,231,266,37,46,53,62,,,"CCGT D1_Integrated Programme Schedule;CIVILS;GENERAL & PRELIMINARIES;Salient Contract Dates"
1.4.5.3.8-1,KD_C01XX,"C1 - Construct Crane Walkway, Condensate Pit and Condenser Platforms within Turbine Hall Building",7112,"CCGTD1_IPS",TT_FinMile,"58634",-,-,-,100,TK_Complete,31/03/2019,19/03/2019,31/03/2019,19/03/2019,"","","","",191,226,191,226,44,52,44,52,49,,"CCGT D1_Integrated Programme Schedule;CIVILS;GENERAL & PRELIMINARIES;Salient Contract Dates;Completion of Section C Works (SA1) - 15 Sep 2019",0,0,0.0,0.0,0.0,0,1.0,0.0000812387,0.0,0.0,0.0,0.0,0.0,0.0,1.0,0.0
1.4.5.3.8-2,KD_C03XX,"C3 - Construct Polishing Pit , ALL foundations,  G/F slab for Condensate Polishing Plant area of Turbine Hall",7112,"CCGTD1_IPS",TT_FinMile,"58634",-,-,-,100,TK_Complete,26/11/2018,30/09/2018,26/11/2018,30/09/2018,"","","","",173,202,173,202,40,47,40,47,38,,"CCGT D1_Integrated Programme Schedule;CIVILS;GENERAL & PRELIMINARIES;Salient Contract Dates;Completion of Section C Works (SA1) - 15 Sep 2019",0,0,0.0,0.0,0.0,0,1.0,0.0000812387,0.0,0.0,0.0,0.0,0.0,0.0,1.0,0.0
1.4.5.3.8-3,KD_C04XX,"C4 - Install and T&C two 250t O/H cranes within Turbine Hall and H/O to M&E Contractor",7112,"CCGTD1_IPS",TT_FinMile,"58634",-,-,-,100,TK_Complete,26/11/2018,31/08/2018,26/11/2018,31/08/2018,"","","S1030 FF","S1030",173,198,173,198,40,46,40,46,38,,"CCGT D1_Integrated Programme Schedule;CIVILS;GENERAL & PRELIMINARIES;Salient Contract Dates;Completion of Section C Works (SA1) - 15 Sep 2019",0,1,0.0,0.0002034588,0.0,0,1.0,0.0000812387,0.0,0.0030769231,0.0,0.0005221932,0.0,0.0,1.0,0.0
1.4.5.3.8-4,KD_C05XX,"C5 - Construct trench between Condenser and Condensate Polishing Pit",7112,"CCGTD1_IPS",TT_FinMile,"58634",-,-,-,100,TK_Complete,26/11/2018,30/09/2018,26/11/2018,30/09/2018,"","","","",173,202,173,202,40,47,40,47,38,,"CCGT D1_Integrated Programme Schedule;CIVILS;GENERAL & PRELIMINARIES;Salient Contract Dates;Completion of Section C Works (SA1) - 15 Sep 2019",0,0,0.0,0.0,0.0,0,1.0,0.0000812387,0.0,0.0,0.0,0.0,0.0,0.0,1.0,0.0
1.4.5.3.8-5,KD_C06XX,"C6 - Construct foundations & plinths for support steel structure for A/G sections of CWP to the south of Turbine Hall",7112,"CCGTD1_IPS",TT_FinMile,"58634",-,-,-,100,TK_Complete,09/04/2019,07/03/2019,09/04/2019,07/03/2019,"","","","",192,224,192,224,45,52,45,52,53,,"CCGT D1_Integrated Programme Schedule;CIVILS;GENERAL & PRELIMINARIES;Salient Contract Dates;Completion of Section C Works (SA1) - 15 Sep 2019",0,0,0.0,0.0,0.0,0,1.0,0.0000812387,0.0,0.0,0.0,0.0,0.0,0.0,1.0,0.0
1.4.5.3.8-6,KD_C07XX,"C7 - Complete ALL civil works incl. foundations, pile cap, fire walls & hard standings for Generator Transformer Area",7112,"CCGTD1_IPS",TT_FinMile,"58634",-,-,-,100,TK_Complete,09/04/2019,18/02/2019,09/04/2019,18/02/2019,"","","","",192,222,192,222,45,51,45,51,53,,"CCGT D1_Integrated Programme Schedule;CIVILS;GENERAL & PRELIMINARIES;Salient Contract Dates;Completion of Section C Works (SA1) - 15 Sep 2019",0,0,0.0,0.0,0.0,0,1.0,0.0000812387,0.0,0.0,0.0,0.0,0.0,0.0,1.0,0.0
1.4.5.3.8-7,KD_C08XX,"C8 - Install Middle Section of U/G large diameter Intake & Discharge CWP and finish surface ground for machinery access",7112,"CCGTD1_IPS",TT_FinMile,"58634",-,-,-,100,TK_Complete,03/09/2018,03/09/2018,03/09/2018,03/09/2018,"","","","",161,198,161,198,37,46,37,46,36,,"CCGT D1_Integrated Programme Schedule;CIVILS;GENERAL & PRELIMINARIES;Salient Contract Dates;Completion of Section C Works (SA1) - 15 Sep 2019",0,0,0.0,0.0,0.0,0,1.0,0.0000812387,0.0,0.0,0.0,0.0,0.0,0.0,1.0,0.0
1.4.5.3.8-8,CW1.2,"Cooling Water System Ready to Provide Water",7112,"CCGTD1_IPS",TT_FinMile,"58634",-,-,-,100,TK_Complete,01/01/2020,24/12/2019,01/01/2020,24/12/2019,"SFE30128 FF,SFA20210 FF,ICM10240 FF,CW1.3 FF,DBC10120 FF,DBC20120 FF,DBC30020 FF,DBC30110 FF,DPT10125XX FF,DPT20130XX FF,DPT30140 FF,DPT30150 FF,DPT40020 FF,EV055030 FF","SFE30128,SFA20210,ICM10240,CW1.3,DBC10120,DBC20120,DBC30020,DBC30110,DPT10125XX,DPT20130XX,DPT30140,DPT30150,DPT40020,EV055030","","",231,266,231,266,53,62,53,62,86,,"CCGT D1_Integrated Programme Schedule;CIVILS;GENERAL & PRELIMINARIES;Salient Contract Dates;Completion of Section C Works (SA1) - 15 Sep 2019",14,0,0.0,0.0,0.0679552391,0,1.0,0.0000812387,0.095890411,0.0,0.0,0.0,0.2149292149,0.0,1.0,0.0
1.4.5.3.9,58633,"Completion of Section B Works (SA1) - 14 Apr 2019",7112,"CCGTD1_IPS",WBS,"58628",,,,100,Complete,15/03/2018,31/01/2018,02/06/2019,12/05/2019,,,,,137,167,200,234,32,39,46,54,,,"CCGT D1_Integrated Programme Schedule;CIVILS;GENERAL & PRELIMINARIES;Salient Contract Dates"
1.4.5.3.9-1,KD_B01XX,"B1 - Complete Foundation Structures and Pile Caps for Stack, Diffuser and HRSG Main Plant with Lift and Staircase Towers",7112,"CCGTD1_IPS",TT_FinMile,"58633",-,-,-,100,TK_Complete,15/03/2018,31/01/2018,15/03/2018,31/01/2018,"","","","",137,167,137,167,32,39,32,39,22,,"CCGT D1_Integrated Programme Schedule;CIVILS;GENERAL & PRELIMINARIES;Salient Contract Dates;Completion of Section B Works (SA1) - 14 Apr 2019",0,0,0.0,0.0,0.0,0,1.0,0.0000812387,0.0,0.0,0.0,0.0,0.0,0.0,1.0,0.0
1.4.5.3.9-2,KD_B04XX,"B4 - Install Southern Section of UG large diameter Intake & Discharge CWP and finish ground surface for machinery access",7112,"CCGTD1_IPS",TT_FinMile,"58633",-,-,-,100,TK_Complete,09/04/2019,12/02/2019,09/04/2019,12/02/2019,"","","","",192,221,192,221,45,51,45,51,53,,"CCGT D1_Integrated Programme Schedule;CIVILS;GENERAL & PRELIMINARIES;Salient Contract Dates;Completion of Section B Works (SA1) - 14 Apr 2019",0,0,0.0,0.0,0.0,0,1.0,0.0000812387,0.0,0.0,0.0,0.0,0.0,0.0,1.0,0.0
1.4.5.3.9-3,KD_B05XX,"B5 - Construct Condensate Pit",7112,"CCGTD1_IPS",TT_FinMile,"58633",-,-,-,100,TK_Complete,26/11/2018,22/11/2018,26/11/2018,22/11/2018,"","","","",173,209,173,209,40,48,40,48,38,,"CCGT D1_Integrated Programme Schedule;CIVILS;GENERAL & PRELIMINARIES;Salient Contract Dates;Completion of Section B Works (SA1) - 14 Apr 2019",0,0,0.0,0.0,0.0,0,1.0,0.0000812387,0.0,0.0,0.0,0.0,0.0,0.0,1.0,0.0
1.4.5.3.9-4,KD_B06XX,"B6 - Construct Turboset foundation and supporting pile cap",7112,"CCGTD1_IPS",TT_FinMile,"58633",-,-,-,100,TK_Complete,23/04/2018,20/04/2018,23/04/2018,20/04/2018,"","","","",142,179,142,179,33,41,33,41,24,,"CCGT D1_Integrated Programme Schedule;CIVILS;GENERAL & PRELIMINARIES;Salient Contract Dates;Completion of Section B Works (SA1) - 14 Apr 2019",0,0,0.0,0.0,0.0,0,1.0,0.0000812387,0.0,0.0,0.0,0.0,0.0,0.0,1.0,0.0
1.4.5.3.9-5,KD_B07XX,"B7 - Construct pile caps, tie beams and G/F slab for Turbine Hall Building",7112,"CCGTD1_IPS",TT_FinMile,"58633",-,-,-,100,TK_Complete,26/11/2018,30/09/2018,26/11/2018,30/09/2018,"","","","",173,202,173,202,40,47,40,47,38,,"CCGT D1_Integrated Programme Schedule;CIVILS;GENERAL & PRELIMINARIES;Salient Contract Dates;Completion of Section B Works (SA1) - 14 Apr 2019",0,0,0.0,0.0,0.0,0,1.0,0.0000812387,0.0,0.0,0.0,0.0,0.0,0.0,1.0,0.0
1.4.5.3.9-6,KD_B08XX,"B8 - Construct supporting structure for O/H Cranes of Turbine Hall incl. associated roof structures & partial side walls",7112,"CCGTD1_IPS",TT_FinMile,"58633",-,-,-,100,TK_Complete,26/06/2018,27/05/2018,26/06/2018,27/05/2018,"","","","",151,184,151,184,35,43,35,43,31,,"CCGT D1_Integrated Programme Schedule;CIVILS;GENERAL & PRELIMINARIES;Salient Contract Dates;Completion of Section B Works (SA1) - 14 Apr 2019",0,0,0.0,0.0,0.0,0,1.0,0.0000812387,0.0,0.0,0.0,0.0,0.0,0.0,1.0,0.0
1.4.5.3.9-7,KD_B99XX,"Completion of Section B of the Works (Day 255)",7112,"CCGTD1_IPS",TT_FinMile,"58633",-,-,-,100,TK_Complete,09/04/2019,12/02/2019,09/04/2019,12/02/2019,"","","","",192,221,192,221,45,51,45,51,53,,"CCGT D1_Integrated Programme Schedule;CIVILS;GENERAL & PRELIMINARIES;Salient Contract Dates;Completion of Section B Works (SA1) - 14 Apr 2019",0,0,0.0,0.0,0.0,0,1.0,0.0000812387,0.0,0.0,0.0,0.0,0.0,0.0,1.0,0.0
1.4.5.3.9-8,KD_B09XX,"B9 - Complete Underground Earthing and Lightning Protection Installation inside the Turbine Hall",7112,"CCGTD1_IPS",TT_FinMile,"58633",-,-,-,100,TK_Complete,26/11/2018,09/09/2018,26/11/2018,09/09/2018,"","","","",173,199,173,199,40,46,40,46,38,,"CCGT D1_Integrated Programme Schedule;CIVILS;GENERAL & PRELIMINARIES;Salient Contract Dates;Completion of Section B Works (SA1) - 14 Apr 2019",0,0,0.0,0.0,0.0,0,1.0,0.0000812387,0.0,0.0,0.0,0.0,0.0,0.0,1.0,0.0
1.4.5.3.9-9,KD_B10XX,"B10 - Complete Underground Drainage Works inside the Turbine Hall",7112,"CCGTD1_IPS",TT_FinMile,"58633",-,-,-,100,TK_Complete,26/01/2019,22/11/2018,26/01/2019,22/11/2018,"","","","",182,209,182,209,42,48,42,48,44,,"CCGT D1_Integrated Programme Schedule;CIVILS;GENERAL & PRELIMINARIES;Salient Contract Dates;Completion of Section B Works (SA1) - 14 Apr 2019",0,0,0.0,0.0,0.0,0,1.0,0.0000812387,0.0,0.0,0.0,0.0,0.0,0.0,1.0,0.0
1.4.5.3.9-10,CW1.1,"Pump Station Structural Completion (= M&E Access)",7112,"CCGTD1_IPS",TT_FinMile,"58633",-,-,-,100,TK_Complete,02/06/2019,12/05/2019,02/06/2019,12/05/2019,"PPS10380 FS","PPS10380","","",200,234,200,234,46,54,46,54,61,,"CCGT D1_Integrated Programme Schedule;CIVILS;GENERAL & PRELIMINARIES;Salient Contract Dates;Completion of Section B Works (SA1) - 14 Apr 2019",1,0,0.0,0.0,0.012207528,0,1.0,0.0000812387,0.0068493151,0.0,0.0,0.0,0.0386100386,0.0,1.0,0.0
1.4.5.3.10,58632,"Completion of Section A Works (SA1) - 11 Feb 2019",7112,"CCGTD1_IPS",WBS,"58628",,,,100,Complete,11/09/2017,08/09/2017,01/01/2020,23/12/2019,,,,,110,147,231,266,25,34,53,62,,,"CCGT D1_Integrated Programme Schedule;CIVILS;GENERAL & PRELIMINARIES;Salient Contract Dates"
1.4.5.3.10-1,KD_A02XX,"A2 - Complete Site Clearance and Establishment Works",7112,"CCGTD1_IPS",TT_FinMile,"58632",-,-,-,100,TK_Complete,11/09/2017,08/09/2017,11/09/2017,08/09/2017,"","","","",110,147,110,147,25,34,25,34,11,,"CCGT D1_Integrated Programme Schedule;CIVILS;GENERAL & PRELIMINARIES;Salient Contract Dates;Completion of Section A Works (SA1) - 11 Feb 2019",0,0,0.0,0.0,0.0,0,1.0,0.0000812387,0.0,0.0,0.0,0.0,0.0,0.0,1.0,0.0
1.4.5.3.10-2,KD_A99XX,"Completion of Section A of the Works (Day 90)",7112,"CCGTD1_IPS",TT_FinMile,"58632",-,-,-,100,TK_Complete,16/10/2017,08/09/2017,16/10/2017,08/09/2017,"","","","",115,147,115,147,27,34,27,34,12,,"CCGT D1_Integrated Programme Schedule;CIVILS;GENERAL & PRELIMINARIES;Salient Contract Dates;Completion of Section A Works (SA1) - 11 Feb 2019",0,0,0.0,0.0,0.0,0,1.0,0.0000812387,0.0,0.0,0.0,0.0,0.0,0.0,1.0,0.0
1.4.5.3.10-3,CW1.3,"Complete Removal of Temp. Bulk head at Seawall Outfall",7112,"CCGTD1_IPS",TT_FinMile,"58632",-,-,-,100,TK_Complete,01/01/2020,23/12/2019,01/01/2020,23/12/2019,"","","CW1.2 FF","CW1.2",231,266,231,266,53,62,53,62,86,,"CCGT D1_Integrated Programme Schedule;CIVILS;GENERAL & PRELIMINARIES;Salient Contract Dates;Completion of Section A Works (SA1) - 11 Feb 2019",0,1,0.0,0.0002034588,0.0,0,1.0,0.0000812387,0.0,0.0030769231,0.0,0.0005221932,0.0,0.0,1.0,0.0
1.4.5.3.11,58631,"Possession of Works Areas",7112,"CCGTD1_IPS",WBS,"58628",,,,100,Complete,29/05/2017,29/05/2017,03/04/2019,31/12/2019,,,,,95,132,192,267,22,30,44,62,,,"CCGT D1_Integrated Programme Schedule;CIVILS;GENERAL & PRELIMINARIES;Salient Contract Dates"
1.4.5.3.12,58630,"Activity Summary/Milestones",7112,"CCGTD1_IPS",WBS,"58628",,,,,NotStart,,,,,,,,,,,,,,,,,,,"CCGT D1_Integrated Programme Schedule;CIVILS;GENERAL & PRELIMINARIES;Salient Contract Dates"
1.4.5.3.13,58629,"Commencement and Completion of Works",7112,"CCGTD1_IPS",WBS,"58628",,,,100,Complete,23/05/2017,23/05/2017,01/01/2020,31/12/2019,,,,,94,131,231,267,22,30,53,62,,,"CCGT D1_Integrated Programme Schedule;CIVILS;GENERAL & PRELIMINARIES;Salient Contract Dates"
1.4.5.3.13-1,COMM,"Commencement of Works (Day 1)",7112,"CCGTD1_IPS",TT_Mile,"58629",-,-,-,100,TK_Complete,29/05/2017,29/05/2017,29/05/2017,29/05/2017,"_LOI FS","_LOI","AREA1BXX FS,AREA2AXX FS,AREA4AXX FS,AREA2BXX FS,AREA2CXX FS,AREA3XX FS,AREA1AXX FS,ESTAB040 FS,ESTAB010 FS,IRRIDN10 FS,AREA4BXX FS,ESTAB020 FS,SCW-BA58 FS,ESTAB030 FS,GEOT0010 FS,CLPCCR10 FS,LAND0020XX FS,AREA5XX SS,GENSUB05 FS,TWORK010XX SS,PROSC030 FS,PROSC040 FS,PROSC050 FS,PROSC060 FS,PROSC070 FS,PROSC080 FS,PROSC010 FS,PROSC020 FS,TWORK020XX FS,ICM00010 FS","AREA1BXX,AREA2AXX,AREA4AXX,AREA2BXX,AREA2CXX,AREA3XX,AREA1AXX,ESTAB040,ESTAB010,IRRIDN10,AREA4BXX,ESTAB020,SCW-BA58,ESTAB030,GEOT0010,CLPCCR10,LAND0020XX,AREA5XX,GENSUB05,TWORK010XX,PROSC030,PROSC040,PROSC050,PROSC060,PROSC070,PROSC080,PROSC010,PROSC020,TWORK020XX,ICM00010",95,132,95,132,22,30,22,30,5,,"CCGT D1_Integrated Programme Schedule;CIVILS;GENERAL & PRELIMINARIES;Salient Contract Dates;Commencement and Completion of Works",1,21,0.0000184661,0.1395727365,0.0002034588,0,1.0,0.0000812387,0.0068493151,0.0646153846,0.027875,0.3582245431,0.0006435006,0.0,1.0,0.0
1.4.5.3.13-2,COMP,"Completion of Works (Day 947) (SA1)",7112,"CCGTD1_IPS",TT_FinMile,"58629",-,-,-,100,TK_Complete,01/01/2020,31/12/2019,01/01/2020,31/12/2019,"AREA1AXX FS,AREA1BXX FS,AREA2AXX FS,AREA2BXX FS,AREA4AXX FS,AREA6XX FS,AREA7XX FS,AREA8XX FS,AREA4BXX FS,AREA2CXX FF,AREA3XX FF,AREA5XX FF","AREA1AXX,AREA1BXX,AREA2AXX,AREA2BXX,AREA4AXX,AREA6XX,AREA7XX,AREA8XX,AREA4BXX,AREA2CXX,AREA3XX,AREA5XX","","",231,267,231,267,53,62,53,62,86,,"CCGT D1_Integrated Programme Schedule;CIVILS;GENERAL & PRELIMINARIES;Salient Contract Dates;Commencement and Completion of Works",0,0,0.0,0.0,0.0,0,1.0,0.0000812387,0.0,0.0,0.0,0.0,0.0,0.0,1.0,0.0
1.4.5.3.13-3,_LOI,"Letter of Intent (LOI)",7112,"CCGTD1_IPS",TT_Mile,"58629",-,-,-,100,TK_Complete,23/05/2017,23/05/2017,23/05/2017,23/05/2017,"","","COMM FS,PROSC010 FS,PROSC020 FS,PROSC030 FS,PROSC040 FS,PROSC050 FS,PROSC060 FS,PROSC070 FS,PROSC080 FS,SFDtDN10 SS","COMM,PROSC010,PROSC020,PROSC030,PROSC040,PROSC050,PROSC060,PROSC070,PROSC080,SFDtDN10",94,131,94,131,22,30,22,30,5,,"CCGT D1_Integrated Programme Schedule;CIVILS;GENERAL & PRELIMINARIES;Salient Contract Dates;Commencement and Completion of Works",0,10,0.0,0.1403865717,0.0,0,1.0,0.0000812387,0.0,0.0307692308,0.0,0.3603133159,0.0,0.0,1.0,0.0
1.5,58234,"OEM (Engineering & Deliverables)",7112,"CCGTD1_IPS",WBS,"58232",,,,100,Complete,02/07/2016,16/04/2016,12/12/2021,,,,,,48,74,332,,11,17,77,,,,"CCGT D1_Integrated Programme Schedule"
1.5.1,61649,"BALANCE OF PLANT (BOP OPTION)",7112,"CCGTD1_IPS",WBS,"58234",,,,100,Complete,14/01/2017,10/12/2016,06/10/2018,27/11/2018,,,,,76,108,166,210,17,25,38,49,,,"CCGT D1_Integrated Programme Schedule;OEM (Engineering & Deliverables)"
1.5.1.1,61667,"WATER PIPEWORK SYSTEM",7112,"CCGTD1_IPS",WBS,"61649",,,,100,Complete,01/03/2017,25/02/2017,06/10/2018,25/10/2018,,,,,83,119,166,205,19,27,38,48,,,"CCGT D1_Integrated Programme Schedule;OEM (Engineering & Deliverables);BALANCE OF PLANT (BOP OPTION)"
1.5.1.1.1,61669,"NOx Water Injection Pump MBU",7112,"CCGTD1_IPS",WBS,"61667",,,,100,Complete,01/03/2017,25/02/2017,06/10/2018,25/10/2018,,,,,83,119,166,205,19,27,38,48,,,"CCGT D1_Integrated Programme Schedule;OEM (Engineering & Deliverables);BALANCE OF PLANT (BOP OPTION);WATER PIPEWORK SYSTEM"
1.5.1.1.1-1,SI-PAS4-64,"(BOP) TRANSPORT NOX WATER INJECTION PUMP",7112,"CCGTD1_IPS",TT_Task,"61669",-,-,-,100,TK_Complete,19/08/2018,19/10/2018,06/10/2018,25/10/2018,"SI-PAS3-54 FS","SI-PAS3-54","SI-PAS4-68 FS","SI-PAS4-68",159,205,166,205,37,47,38,48,34,,"CCGT D1_Integrated Programme Schedule;OEM (Engineering & Deliverables);BALANCE OF PLANT (BOP OPTION);WATER PIPEWORK SYSTEM;NOx Water Injection Pump MBU",1,1,0.0000002898,0.0002034588,0.0014242116,48,1.0,0.0001503957,0.0068493151,0.0030769231,0.0004375,0.0005221932,0.0045045045,0.1076233184,1.0,0.0283369572
1.5.1.1.1-2,SI-PAS2-41,"(BOP) BASIC DESIGN, SPECIFICATION NOX WATER INJECTION PUMP",7112,"CCGTD1_IPS",TT_Task,"61669",-,-,-,100,TK_Complete,08/05/2017,08/04/2017,02/07/2017,02/06/2017,"SI-PAS2-39 FS","SI-PAS2-39","SI-PAS2-43 FS","SI-PAS2-43",92,125,100,133,21,29,23,31,5,,"CCGT D1_Integrated Programme Schedule;OEM (Engineering & Deliverables);BALANCE OF PLANT (BOP OPTION);WATER PIPEWORK SYSTEM;NOx Water Injection Pump MBU",1,1,0.0000002898,0.0014242116,0.0002034588,55,1.0,0.0001503957,0.0068493151,0.0030769231,0.0004375,0.0036553525,0.0006435006,0.1233183857,1.0,0.0283369572
1.5.1.1.1-3,SI-PAS2-39,"(BOP) TECHNICAL CLARIFICATION NOX WATER INJECTION PUMP",7112,"CCGTD1_IPS",TT_Task,"61669",-,-,-,100,TK_Complete,01/03/2017,25/02/2017,11/04/2017,07/04/2017,"","","SI-PAS2-41 FS","SI-PAS2-41",83,119,88,125,19,27,20,29,2,,"CCGT D1_Integrated Programme Schedule;OEM (Engineering & Deliverables);BALANCE OF PLANT (BOP OPTION);WATER PIPEWORK SYSTEM;NOx Water Injection Pump MBU",0,1,0.0,0.0016276704,0.0,41,1.0,0.0000812387,0.0,0.0030769231,0.0,0.0041775457,0.0,0.0919282511,1.0,0.0
1.5.1.1.1-4,SI-PAS3-52,"(BOP) MANUFACTURING, SHOP TEST NOX WATER INJECTION PUMP",7112,"CCGTD1_IPS",TT_Task,"61669",-,-,-,100,TK_Complete,26/01/2018,27/12/2017,11/08/2018,15/10/2018,"SI-PAS2-47 FS","SI-PAS2-47","SI-PAS3-54 FS","SI-PAS3-54",130,162,158,204,30,37,36,47,17,,"CCGT D1_Integrated Programme Schedule;OEM (Engineering & Deliverables);BALANCE OF PLANT (BOP OPTION);WATER PIPEWORK SYSTEM;NOx Water Injection Pump MBU",1,1,0.0000006211,0.0006103764,0.001017294,197,0.0,0.0001503957,0.0068493151,0.0030769231,0.0009375,0.0015665796,0.0032175032,0.4417040359,0.0,0.0283369572
1.5.1.1.1-5,SI-PAS2-47,"(BOP) ORDER PLACED NOX WATER INJECTION PUMP",7112,"CCGTD1_IPS",TT_Mile,"61669",-,-,-,100,TK_Complete,26/01/2018,27/12/2017,26/01/2018,27/12/2017,"SI-PAS2-45 FS","SI-PAS2-45","SI-PAS3-52 FS","SI-PAS3-52",130,162,130,162,30,37,30,37,17,,"CCGT D1_Integrated Programme Schedule;OEM (Engineering & Deliverables);BALANCE OF PLANT (BOP OPTION);WATER PIPEWORK SYSTEM;NOx Water Injection Pump MBU",1,1,0.0000006625,0.0008138352,0.0008138352,0,1.0,0.0000812387,0.0068493151,0.0030769231,0.001,0.0020887728,0.0025740026,0.0,1.0,0.0
1.5.1.1.1-6,SI-PAS2-43,"(BOP) RFQ NOX WATER INJECTION PUMP",7112,"CCGTD1_IPS",TT_FinMile,"61669",-,-,-,100,TK_Complete,27/06/2017,02/06/2017,27/06/2017,02/06/2017,"SI-PAS2-41 FS","SI-PAS2-41","SI-PAS2-45 FS","SI-PAS2-45",99,133,99,133,23,31,23,31,8,,"CCGT D1_Integrated Programme Schedule;OEM (Engineering & Deliverables);BALANCE OF PLANT (BOP OPTION);WATER PIPEWORK SYSTEM;NOx Water Injection Pump MBU",1,1,0.0000004968,0.0012207528,0.0004069176,0,1.0,0.0000812387,0.0068493151,0.0030769231,0.00075,0.0031331593,0.0012870013,0.0,1.0,0.0
1.5.1.1.1-7,SI-PAS2-45,"(BOP) QUOTATION STAGE NOX WATER INJECTION PUMP",7112,"CCGTD1_IPS",TT_Task,"61669",-,-,-,100,TK_Complete,28/06/2017,03/06/2017,08/08/2017,31/08/2017,"SI-PAS2-43 FS","SI-PAS2-43","SI-PAS2-47 FS","SI-PAS2-47",100,133,105,145,23,31,24,34,8,,"CCGT D1_Integrated Programme Schedule;OEM (Engineering & Deliverables);BALANCE OF PLANT (BOP OPTION);WATER PIPEWORK SYSTEM;NOx Water Injection Pump MBU",1,1,0.0000006211,0.001017294,0.0006103764,41,0.0,0.0001503957,0.0068493151,0.0030769231,0.0009375,0.0026109661,0.0019305019,0.0919282511,0.0,0.0283369572
1.5.1.1.1-8,SI-PAS3-54,"(BOP) (RFS) READY FOR SHIPMENT NOX WATER INJECTION PUMP",7112,"CCGTD1_IPS",TT_FinMile,"61669",-,-,-,100,TK_Complete,18/08/2018,15/10/2018,18/08/2018,15/10/2018,"SI-PAS3-52 FS","SI-PAS3-52","SI-PAS4-64 FS","SI-PAS4-64",159,204,159,204,37,47,37,47,34,,"CCGT D1_Integrated Programme Schedule;OEM (Engineering & Deliverables);BALANCE OF PLANT (BOP OPTION);WATER PIPEWORK SYSTEM;NOx Water Injection Pump MBU",1,1,0.0000004968,0.0004069176,0.0012207528,0,1.0,0.0000812387,0.0068493151,0.0030769231,0.00075,0.0010443864,0.0038610039,0.0,1.0,0.0
1.5.1.1.1-9,SI-PAS4-68,"(OTD-OS) (BOP) ON SITE NOX WATER INJECTION PUMP",7112,"CCGTD1_IPS",TT_FinMile,"61669",-,-,-,100,TK_Complete,06/10/2018,25/10/2018,06/10/2018,25/10/2018,"SI-PAS4-64 FS","SI-PAS4-64","","",166,205,166,205,38,48,38,48,37,,"CCGT D1_Integrated Programme Schedule;OEM (Engineering & Deliverables);BALANCE OF PLANT (BOP OPTION);WATER PIPEWORK SYSTEM;NOx Water Injection Pump MBU",1,0,0.0,0.0,0.0016276704,0,1.0,0.0000812387,0.0068493151,0.0,0.0,0.0,0.0051480051,0.0,1.0,0.0
1.5.1.1.2,61668,"Supply Piping (NON- ALLOYED MATERIAL) & Support",7112,"CCGTD1_IPS",WBS,"61667",,,,100,Complete,01/03/2017,25/02/2017,12/09/2018,13/07/2018,,,,,83,119,163,191,19,27,38,44,,,"CCGT D1_Integrated Programme Schedule;OEM (Engineering & Deliverables);BALANCE OF PLANT (BOP OPTION);WATER PIPEWORK SYSTEM"
1.5.1.1.2-1,SI-GHD2-37,"(BOP) TECHNICAL CLARIFICATION WATER PIPEWORK SYSTEM",7112,"CCGTD1_IPS",TT_Task,"61668",-,-,-,100,TK_Complete,01/03/2017,25/02/2017,11/04/2017,07/04/2017,"","","SI-GHD2-20 FS","SI-GHD2-20",83,119,88,125,19,27,20,29,2,,"CCGT D1_Integrated Programme Schedule;OEM (Engineering & Deliverables);BALANCE OF PLANT (BOP OPTION);WATER PIPEWORK SYSTEM;Supply Piping (NON- ALLOYED MATERIAL) & Support",0,1,0.0,0.0014242116,0.0,41,1.0,0.0000812387,0.0,0.0030769231,0.0,0.0036553525,0.0,0.0919282511,1.0,0.0
1.5.1.1.2-2,SI-GHD2-35,"(BOP) ORDER PLACED WATER PIPEWORK SYSTEM",7112,"CCGTD1_IPS",TT_Mile,"61668",-,-,-,100,TK_Complete,26/09/2017,25/09/2017,26/09/2017,25/09/2017,"SI-GHD2-30 FS","SI-GHD2-30","SI-GHD3-40 FS","SI-GHD3-40",112,149,112,149,26,34,26,34,12,,"CCGT D1_Integrated Programme Schedule;OEM (Engineering & Deliverables);BALANCE OF PLANT (BOP OPTION);WATER PIPEWORK SYSTEM;Supply Piping (NON- ALLOYED MATERIAL) & Support",1,1,0.0000004968,0.0006103764,0.0008138352,0,1.0,0.0000812387,0.0068493151,0.0030769231,0.00075,0.0015665796,0.0025740026,0.0,1.0,0.0
1.5.1.1.2-3,SI-GHD2-25,"(BOP) RFQ WATER PIPEWORK SYSTEM",7112,"CCGTD1_IPS",TT_FinMile,"61668",-,-,-,100,TK_Complete,26/07/2017,27/06/2017,26/07/2017,27/06/2017,"SI-GHD2-20 FS","SI-GHD2-20","SI-GHD2-30 FS","SI-GHD2-30",104,136,104,136,24,31,24,31,9,,"CCGT D1_Integrated Programme Schedule;OEM (Engineering & Deliverables);BALANCE OF PLANT (BOP OPTION);WATER PIPEWORK SYSTEM;Supply Piping (NON- ALLOYED MATERIAL) & Support",1,1,0.000000414,0.001017294,0.0004069176,0,1.0,0.0000812387,0.0068493151,0.0030769231,0.000625,0.0026109661,0.0012870013,0.0,1.0,0.0
1.5.1.1.2-4,SI-GHD2-30,"(BOP) QUOTATION STAGE WATER PIPEWORK SYSTEM",7112,"CCGTD1_IPS",TT_Task,"61668",-,-,-,100,TK_Complete,27/07/2017,28/06/2017,06/09/2017,24/09/2017,"SI-GHD2-25 FS","SI-GHD2-25","SI-GHD2-35 FS","SI-GHD2-35",104,136,110,149,24,31,25,34,9,,"CCGT D1_Integrated Programme Schedule;OEM (Engineering & Deliverables);BALANCE OF PLANT (BOP OPTION);WATER PIPEWORK SYSTEM;Supply Piping (NON- ALLOYED MATERIAL) & Support",1,1,0.0000004968,0.0008138352,0.0006103764,41,0.0,0.0001503957,0.0068493151,0.0030769231,0.00075,0.0020887728,0.0019305019,0.0919282511,0.0,0.0283369572
1.5.1.1.2-5,SI-GHD3-50,"(BOP) (RFS) READY FOR SHIPMENT WATER PIPEWORK SYSTEM",7112,"CCGTD1_IPS",TT_FinMile,"61668",-,-,-,100,TK_Complete,14/07/2018,11/05/2018,14/07/2018,11/05/2018,"SI-GHD3-40 FS","SI-GHD3-40","SI-GHD4-64 FS","SI-GHD4-64",154,182,154,182,36,42,36,42,32,,"CCGT D1_Integrated Programme Schedule;OEM (Engineering & Deliverables);BALANCE OF PLANT (BOP OPTION);WATER PIPEWORK SYSTEM;Supply Piping (NON- ALLOYED MATERIAL) & Support",1,1,0.0000002484,0.0002034588,0.0012207528,0,1.0,0.0000812387,0.0068493151,0.0030769231,0.000375,0.0005221932,0.0038610039,0.0,1.0,0.0
1.5.1.1.2-6,SI-GHD3-40,"(BOP) MANUFACTURING, SHOP TEST WATER PIPEWORK SYSTEM",7112,"CCGTD1_IPS",TT_Task,"61668",-,-,-,100,TK_Complete,26/09/2017,25/09/2017,03/07/2018,11/05/2018,"SI-GHD2-35 FS","SI-GHD2-35","SI-GHD3-50 FS","SI-GHD3-50",112,149,152,182,26,34,35,42,12,,"CCGT D1_Integrated Programme Schedule;OEM (Engineering & Deliverables);BALANCE OF PLANT (BOP OPTION);WATER PIPEWORK SYSTEM;Supply Piping (NON- ALLOYED MATERIAL) & Support",1,1,0.000000414,0.0004069176,0.001017294,280,1.0,0.0001503957,0.0068493151,0.0030769231,0.000625,0.0010443864,0.0032175032,0.6278026906,1.0,0.0283369572
1.5.1.1.2-7,SI-GHD4-64,"(BOP) TRANSPORT WATER PIPEWORK SYSTEM",7112,"CCGTD1_IPS",TT_Task,"61668",-,-,-,100,TK_Complete,15/07/2018,12/05/2018,12/09/2018,13/07/2018,"SI-GHD3-50 FS","SI-GHD3-50","","",154,182,163,191,36,42,38,44,32,,"CCGT D1_Integrated Programme Schedule;OEM (Engineering & Deliverables);BALANCE OF PLANT (BOP OPTION);WATER PIPEWORK SYSTEM;Supply Piping (NON- ALLOYED MATERIAL) & Support",1,0,0.0,0.0,0.0014242116,59,0.6,0.0001503957,0.0068493151,0.0,0.0,0.0,0.0045045045,0.1322869955,0.6,0.0283369572
1.5.1.1.2-8,SI-GHD2-20,"(BOP) BASIC DESIGN, SPECIFICATION WATER PIPEWORK SYSTEM",7112,"CCGTD1_IPS",TT_Task,"61668",-,-,-,100,TK_Complete,08/05/2017,08/04/2017,02/07/2017,27/06/2017,"SI-GHD2-37 FS","SI-GHD2-37","SI-GHD2-25 FS","SI-GHD2-25",92,125,100,136,21,29,23,31,5,,"CCGT D1_Integrated Programme Schedule;OEM (Engineering & Deliverables);BALANCE OF PLANT (BOP OPTION);WATER PIPEWORK SYSTEM;Supply Piping (NON- ALLOYED MATERIAL) & Support",1,1,0.0000002484,0.0012207528,0.0002034588,55,0.0,0.0001503957,0.0068493151,0.0030769231,0.000375,0.0031331593,0.0006435006,0.1233183857,0.0,0.0283369572
1.5.1.2,61665,"COMPRESSED AIR INTERCONNECTION PIPEWORK SYSTEM",7112,"CCGTD1_IPS",WBS,"61649",,,,100,Complete,01/06/2017,13/05/2017,02/10/2018,15/08/2018,,,,,96,130,165,195,22,30,38,45,,,"CCGT D1_Integrated Programme Schedule;OEM (Engineering & Deliverables);BALANCE OF PLANT (BOP OPTION)"
1.5.1.2.1,61666,"Supply Piping (NON- ALLOYED MATERIAL) & Support",7112,"CCGTD1_IPS",WBS,"61665",,,,100,Complete,01/06/2017,13/05/2017,02/10/2018,15/08/2018,,,,,96,130,165,195,22,30,38,45,,,"CCGT D1_Integrated Programme Schedule;OEM (Engineering & Deliverables);BALANCE OF PLANT (BOP OPTION);COMPRESSED AIR INTERCONNECTION PIPEWORK SYSTEM"
1.5.1.2.1-1,SI-SCB2-25,"(BOP) TECHNICAL CLARIFICATION COMPRESSED AIR INTERCONNECTION SYSTEM",7112,"CCGTD1_IPS",TT_Task,"61666",-,-,-,100,TK_Complete,01/06/2017,13/05/2017,12/07/2017,23/06/2017,"","","SI-SCB2-20 FS","SI-SCB2-20",96,130,102,136,22,30,23,31,6,,"CCGT D1_Integrated Programme Schedule;OEM (Engineering & Deliverables);BALANCE OF PLANT (BOP OPTION);COMPRESSED AIR INTERCONNECTION PIPEWORK SYSTEM;Supply Piping (NON- ALLOYED MATERIAL) & Support",0,1,0.0,0.0014242116,0.0,41,1.0,0.0000812387,0.0,0.0030769231,0.0,0.0036553525,0.0,0.0919282511,1.0,0.0
1.5.1.2.1-2,SI-SCB2-40,"(BOP) ORDER PLACED COMPRESSED AIR INTERCONNECTION SYSTEM",7112,"CCGTD1_IPS",TT_Mile,"61666",-,-,-,100,TK_Complete,26/09/2017,25/09/2017,26/09/2017,25/09/2017,"SI-SCB2-35 FS","SI-SCB2-35","SI-SCB3-45 FS","SI-SCB3-45",112,149,112,149,26,34,26,34,12,,"CCGT D1_Integrated Programme Schedule;OEM (Engineering & Deliverables);BALANCE OF PLANT (BOP OPTION);COMPRESSED AIR INTERCONNECTION PIPEWORK SYSTEM;Supply Piping (NON- ALLOYED MATERIAL) & Support",1,1,0.0000004968,0.0006103764,0.0008138352,0,1.0,0.0000812387,0.0068493151,0.0030769231,0.00075,0.0015665796,0.0025740026,0.0,1.0,0.0
1.5.1.2.1-3,SI-SCB2-30,"(BOP) RFQ COMPRESSED AIR INTERCONNECTION SYSTEM",7112,"CCGTD1_IPS",TT_FinMile,"61666",-,-,-,100,TK_Complete,05/09/2017,04/08/2017,05/09/2017,04/08/2017,"SI-SCB2-20 FS","SI-SCB2-20","SI-SCB2-35 FS","SI-SCB2-35",109,142,109,142,25,33,25,33,11,,"CCGT D1_Integrated Programme Schedule;OEM (Engineering & Deliverables);BALANCE OF PLANT (BOP OPTION);COMPRESSED AIR INTERCONNECTION PIPEWORK SYSTEM;Supply Piping (NON- ALLOYED MATERIAL) & Support",1,1,0.000000414,0.001017294,0.0004069176,0,1.0,0.0000812387,0.0068493151,0.0030769231,0.000625,0.0026109661,0.0012870013,0.0,1.0,0.0
1.5.1.2.1-4,SI-SCB2-35,"(BOP) QUOTATION STAGE COMPRESSED AIR INTERCONNECTION SYSTEM",7112,"CCGTD1_IPS",TT_Task,"61666",-,-,-,100,TK_Complete,06/09/2017,05/08/2017,17/10/2017,24/09/2017,"SI-SCB2-30 FS","SI-SCB2-30","SI-SCB2-40 FS","SI-SCB2-40",110,142,115,149,25,33,27,34,11,,"CCGT D1_Integrated Programme Schedule;OEM (Engineering & Deliverables);BALANCE OF PLANT (BOP OPTION);COMPRESSED AIR INTERCONNECTION PIPEWORK SYSTEM;Supply Piping (NON- ALLOYED MATERIAL) & Support",1,1,0.0000004968,0.0008138352,0.0006103764,41,0.4,0.0001503957,0.0068493151,0.0030769231,0.00075,0.0020887728,0.0019305019,0.0919282511,0.4,0.0283369572
1.5.1.2.1-5,SI-SCB3-50,"(BOP) (RFS) READY FOR SHIPMENT COMPRESSED AIR INTERCONNECTION SYSTEM",7112,"CCGTD1_IPS",TT_FinMile,"61666",-,-,-,100,TK_Complete,03/08/2018,31/07/2018,03/08/2018,31/07/2018,"SI-SCB3-45 FS","SI-SCB3-45","SI-SCB4-66 FS","SI-SCB4-66",157,193,157,193,36,45,36,45,34,,"CCGT D1_Integrated Programme Schedule;OEM (Engineering & Deliverables);BALANCE OF PLANT (BOP OPTION);COMPRESSED AIR INTERCONNECTION PIPEWORK SYSTEM;Supply Piping (NON- ALLOYED MATERIAL) & Support",1,1,0.0000002484,0.0002034588,0.0012207528,0,1.0,0.0000812387,0.0068493151,0.0030769231,0.000375,0.0005221932,0.0038610039,0.0,1.0,0.0
1.5.1.2.1-6,SI-SCB3-45,"(BOP) MANUFACTURING, SHOP TEST COMPRESSED AIR INTERCONNECTION SYSTEM",7112,"CCGTD1_IPS",TT_Task,"61666",-,-,-,100,TK_Complete,26/09/2017,25/09/2017,07/07/2018,31/07/2018,"SI-SCB2-40 FS","SI-SCB2-40","SI-SCB3-50 FS","SI-SCB3-50",112,149,153,193,26,34,35,45,12,,"CCGT D1_Integrated Programme Schedule;OEM (Engineering & Deliverables);BALANCE OF PLANT (BOP OPTION);COMPRESSED AIR INTERCONNECTION PIPEWORK SYSTEM;Supply Piping (NON- ALLOYED MATERIAL) & Support",1,1,0.000000414,0.0004069176,0.001017294,284,0.0,0.0001503957,0.0068493151,0.0030769231,0.000625,0.0010443864,0.0032175032,0.6367713004,0.0,0.0283369572
1.5.1.2.1-7,SI-SCB4-66,"(BOP) TRANSPORT COMPRESSED AIR INTERCONNECTION SYSTEM",7112,"CCGTD1_IPS",TT_Task,"61666",-,-,-,100,TK_Complete,04/08/2018,01/08/2018,02/10/2018,15/08/2018,"SI-SCB3-50 FS","SI-SCB3-50","","",157,193,165,195,36,45,38,45,34,,"CCGT D1_Integrated Programme Schedule;OEM (Engineering & Deliverables);BALANCE OF PLANT (BOP OPTION);COMPRESSED AIR INTERCONNECTION PIPEWORK SYSTEM;Supply Piping (NON- ALLOYED MATERIAL) & Support",1,0,0.0,0.0,0.0014242116,59,1.0,0.0001503957,0.0068493151,0.0,0.0,0.0,0.0045045045,0.1322869955,1.0,0.0283369572
1.5.1.2.1-8,SI-SCB2-20,"(BOP) BASIC DESIGN, SPECIFICATION COMPRESSED AIR INTERCONNECTION SYSTEM",7112,"CCGTD1_IPS",TT_Task,"61666",-,-,-,100,TK_Complete,19/07/2017,24/06/2017,29/08/2017,04/08/2017,"SI-SCB2-25 FS","SI-SCB2-25","SI-SCB2-30 FS","SI-SCB2-30",103,136,108,142,24,31,25,33,9,,"CCGT D1_Integrated Programme Schedule;OEM (Engineering & Deliverables);BALANCE OF PLANT (BOP OPTION);COMPRESSED AIR INTERCONNECTION PIPEWORK SYSTEM;Supply Piping (NON- ALLOYED MATERIAL) & Support",1,1,0.0000002484,0.0012207528,0.0002034588,41,1.0,0.0001503957,0.0068493151,0.0030769231,0.000375,0.0031331593,0.0006435006,0.0919282511,1.0,0.0283369572
1.5.1.3,61663,"ELECTROCHLORINATION SYSTEM",7112,"CCGTD1_IPS",WBS,"61649",,,,100,Complete,01/03/2017,27/02/2017,06/10/2018,27/11/2018,,,,,83,119,166,210,19,27,38,49,,,"CCGT D1_Integrated Programme Schedule;OEM (Engineering & Deliverables);BALANCE OF PLANT (BOP OPTION)"
1.5.1.3.1,61664,"Seawater Booster Pump PUS",7112,"CCGTD1_IPS",WBS,"61663",,,,100,Complete,01/03/2017,27/02/2017,06/10/2018,27/11/2018,,,,,83,119,166,210,19,27,38,49,,,"CCGT D1_Integrated Programme Schedule;OEM (Engineering & Deliverables);BALANCE OF PLANT (BOP OPTION);ELECTROCHLORINATION SYSTEM"
1.5.1.3.1-1,SI0PUN3-50,"(BOP) (RFS) READY FOR SHIPMENT SEAWATER BOOSTER PUMP",7112,"CCGTD1_IPS",TT_FinMile,"61664",-,-,-,100,TK_Complete,18/08/2018,22/11/2018,18/08/2018,22/11/2018,"SI0PUN3-35 FS","SI0PUN3-35","SI0PUN4-55 FS","SI0PUN4-55",159,209,159,209,37,48,37,48,34,,"CCGT D1_Integrated Programme Schedule;OEM (Engineering & Deliverables);BALANCE OF PLANT (BOP OPTION);ELECTROCHLORINATION SYSTEM;Seawater Booster Pump PUS",1,1,0.000000414,0.0004069176,0.001017294,0,1.0,0.0000812387,0.0068493151,0.0030769231,0.000625,0.0010443864,0.0032175032,0.0,1.0,0.0
1.5.1.3.1-2,SI0PUN3-35,"(BOP) DETAIL DESIGN, MANUFACTURING, SHOP TESTSEAWATER BOOSTER PUMP",7112,"CCGTD1_IPS",TT_Task,"61664",-,-,-,100,TK_Complete,26/03/2018,26/02/2018,09/08/2018,15/11/2018,"SI0PUN2-40 FS","SI0PUN2-40","SI0PUN3-50 FS","SI0PUN3-50",138,171,158,208,32,40,36,48,23,,"CCGT D1_Integrated Programme Schedule;OEM (Engineering & Deliverables);BALANCE OF PLANT (BOP OPTION);ELECTROCHLORINATION SYSTEM;Seawater Booster Pump PUS",1,1,0.0000004968,0.0006103764,0.0008138352,136,0.0,0.0001503957,0.0068493151,0.0030769231,0.00075,0.0015665796,0.0025740026,0.3049327354,0.0,0.0283369572
1.5.1.3.1-3,SI0PUN4-55,"(BOP) TRANSPORT SEAWATER BOOSTER PUMP",7112,"CCGTD1_IPS",TT_Task,"61664",-,-,-,100,TK_Complete,19/08/2018,23/11/2018,06/10/2018,27/11/2018,"SI0PUN3-50 FS","SI0PUN3-50","SI0PUN4-62 FS","SI0PUN4-62",159,210,166,210,37,49,38,49,35,,"CCGT D1_Integrated Programme Schedule;OEM (Engineering & Deliverables);BALANCE OF PLANT (BOP OPTION);ELECTROCHLORINATION SYSTEM;Seawater Booster Pump PUS",1,1,0.0000002484,0.0002034588,0.0012207528,48,1.0,0.0001503957,0.0068493151,0.0030769231,0.000375,0.0005221932,0.0038610039,0.1076233184,1.0,0.0283369572
1.5.1.3.1-4,SI0PUN4-62,"(OTD-OS) (BOP) ON SITE SEAWATER BOOSTER PUMP",7112,"CCGTD1_IPS",TT_FinMile,"61664",-,-,-,100,TK_Complete,06/10/2018,27/11/2018,06/10/2018,27/11/2018,"SI0PUN4-55 FS","SI0PUN4-55","","",166,210,166,210,38,49,38,49,37,,"CCGT D1_Integrated Programme Schedule;OEM (Engineering & Deliverables);BALANCE OF PLANT (BOP OPTION);ELECTROCHLORINATION SYSTEM;Seawater Booster Pump PUS",1,0,0.0,0.0,0.0014242116,0,1.0,0.0000812387,0.0068493151,0.0,0.0,0.0,0.0045045045,0.0,1.0,0.0
1.5.1.3.1-5,SI0PUN2-20,"(BOP) BASIC DESIGN, PREPARATION RFQ SEAWATER BOOSTER PUMP",7112,"CCGTD1_IPS",TT_Task,"61664",-,-,-,100,TK_Complete,03/05/2017,03/04/2017,04/07/2017,04/06/2017,"SI0PUN2-47 FS","SI0PUN2-47","SI0PUN2-25 FS","SI0PUN2-25",92,124,100,133,21,29,23,31,5,,"CCGT D1_Integrated Programme Schedule;OEM (Engineering & Deliverables);BALANCE OF PLANT (BOP OPTION);ELECTROCHLORINATION SYSTEM;Seawater Booster Pump PUS",1,1,0.0000002484,0.0012207528,0.0002034588,62,1.0,0.0001503957,0.0068493151,0.0030769231,0.000375,0.0031331593,0.0006435006,0.1390134529,1.0,0.0283369572
1.5.1.3.1-6,SI0PUN2-25,"(BOP) QUOTATION STAGE SEAWATER BOOSTER PUMP",7112,"CCGTD1_IPS",TT_Task,"61664",-,-,-,100,TK_Complete,30/06/2017,05/06/2017,24/08/2017,31/08/2017,"SI0PUN2-20 FS","SI0PUN2-20","SI0PUN2-40 FS","SI0PUN2-40",100,133,108,145,23,31,25,34,8,,"CCGT D1_Integrated Programme Schedule;OEM (Engineering & Deliverables);BALANCE OF PLANT (BOP OPTION);ELECTROCHLORINATION SYSTEM;Seawater Booster Pump PUS",1,1,0.000000414,0.001017294,0.0004069176,55,0.0,0.000209244,0.0068493151,0.0030769231,0.000625,0.0026109661,0.0012870013,0.1233183857,0.0,0.0524499399
1.5.1.3.1-7,SI0PUN2-40,"(BOP) ORDER PLACED SEAWATER BOOSTER PUMP",7112,"CCGTD1_IPS",TT_Mile,"61664",-,-,-,100,TK_Complete,26/03/2018,26/02/2018,26/03/2018,26/02/2018,"SI0PUN2-25 FS","SI0PUN2-25","SI0PUN3-35 FS","SI0PUN3-35",138,171,138,171,32,40,32,40,23,,"CCGT D1_Integrated Programme Schedule;OEM (Engineering & Deliverables);BALANCE OF PLANT (BOP OPTION);ELECTROCHLORINATION SYSTEM;Seawater Booster Pump PUS",1,1,0.0000004968,0.0008138352,0.0006103764,0,1.0,0.0000812387,0.0068493151,0.0030769231,0.00075,0.0020887728,0.0019305019,0.0,1.0,0.0
1.5.1.3.1-8,SI0PUN2-47,"(BOP) TECHNICAL CLARIFICATION SEAWATER BOOSTER PUMP",7112,"CCGTD1_IPS",TT_Task,"61664",-,-,-,100,TK_Complete,01/03/2017,27/02/2017,04/04/2017,02/04/2017,"","","SI0PUN2-20 FS","SI0PUN2-20",83,119,87,124,19,27,20,29,2,,"CCGT D1_Integrated Programme Schedule;OEM (Engineering & Deliverables);BALANCE OF PLANT (BOP OPTION);ELECTROCHLORINATION SYSTEM;Seawater Booster Pump PUS",0,1,0.0,0.0014242116,0.0,34,1.0,0.0000812387,0.0,0.0030769231,0.0,0.0036553525,0.0,0.0762331839,1.0,0.0
1.5.1.4,61661,"FUEL OIL FORWARDING SYSTEM",7112,"CCGTD1_IPS",WBS,"61649",,,,100,Complete,14/02/2017,04/02/2017,31/08/2018,30/06/2018,,,,,80,116,161,189,18,27,37,44,,,"CCGT D1_Integrated Programme Schedule;OEM (Engineering & Deliverables);BALANCE OF PLANT (BOP OPTION)"
1.5.1.4.1,61662,"Forwarding Station Liquid Fuel EGA",7112,"CCGTD1_IPS",WBS,"61661",,,,100,Complete,14/02/2017,04/02/2017,31/08/2018,30/06/2018,,,,,80,116,161,189,18,27,37,44,,,"CCGT D1_Integrated Programme Schedule;OEM (Engineering & Deliverables);BALANCE OF PLANT (BOP OPTION);FUEL OIL FORWARDING SYSTEM"
1.5.1.4.1-1,SI0EG-3-82,"(BOP) DETAIL DESIGN, MANUFACTURING, SHOP TEST FUEL OIL FORWARDING SYSTEM EG (incl. PUMPS)",7112,"CCGTD1_IPS",TT_Task,"61662",-,-,-,100,TK_Complete,13/09/2017,21/08/2017,27/06/2018,28/03/2018,"SI0EG-2-93 FS","SI0EG-2-93","SI0EG-3-84 FS","SI0EG-3-84",111,144,152,175,25,33,35,41,11,,"CCGT D1_Integrated Programme Schedule;OEM (Engineering & Deliverables);BALANCE OF PLANT (BOP OPTION);FUEL OIL FORWARDING SYSTEM;Forwarding Station Liquid Fuel EGA",1,1,0.0000006211,0.0006103764,0.001017294,287,1.0,0.0001503957,0.0068493151,0.0030769231,0.0009375,0.0015665796,0.0032175032,0.6434977578,1.0,0.0283369572
1.5.1.4.1-2,SI0EG-4-42,"(BOP) TRANSPORT FUEL OIL FORWARDING SYSTEM EG (incl. PUMPS)",7112,"CCGTD1_IPS",TT_Task,"61662",-,-,-,100,TK_Complete,03/07/2018,27/05/2018,31/08/2018,30/06/2018,"SI0EG-3-84 FS","SI0EG-3-84","SI0EG-4-46 FS","SI0EG-4-46",152,184,161,189,35,43,37,44,32,,"CCGT D1_Integrated Programme Schedule;OEM (Engineering & Deliverables);BALANCE OF PLANT (BOP OPTION);FUEL OIL FORWARDING SYSTEM;Forwarding Station Liquid Fuel EGA",1,1,0.0000002898,0.0002034588,0.0014242116,59,1.0,0.0001503957,0.0068493151,0.0030769231,0.0004375,0.0005221932,0.0045045045,0.1322869955,1.0,0.0283369572
1.5.1.4.1-3,SI0EG-4-46,"(OTD-OS) (BOP) ON SITE FUEL FUEL OIL FORWARDING SYSTEM EG (incl. PUMPS)",7112,"CCGTD1_IPS",TT_FinMile,"61662",-,-,-,100,TK_Complete,31/08/2018,30/06/2018,31/08/2018,30/06/2018,"SI0EG-4-42 FS","SI0EG-4-42","","",161,189,161,189,37,44,37,44,36,,"CCGT D1_Integrated Programme Schedule;OEM (Engineering & Deliverables);BALANCE OF PLANT (BOP OPTION);FUEL OIL FORWARDING SYSTEM;Forwarding Station Liquid Fuel EGA",1,0,0.0,0.0,0.0016276704,0,1.0,0.0000812387,0.0068493151,0.0,0.0,0.0,0.0051480051,0.0,1.0,0.0
1.5.1.4.1-4,SI0EG-2-87,"(BOP) TECHNICAL CLARIFICATION FUEL OIL FORWARDING SYSTEM EG (incl. PUMPS)",7112,"CCGTD1_IPS",TT_Task,"61662",-,-,-,100,TK_Complete,14/02/2017,04/02/2017,20/03/2017,10/03/2017,"SI-EK-2-97 SS","SI-EK-2-97","SI0EG-2-99 FS","SI0EG-2-99",80,116,85,121,18,27,20,28,2,,"CCGT D1_Integrated Programme Schedule;OEM (Engineering & Deliverables);BALANCE OF PLANT (BOP OPTION);FUEL OIL FORWARDING SYSTEM;Forwarding Station Liquid Fuel EGA",1,1,0.0000002898,0.0014242116,0.0002034588,34,1.0,0.0001028106,0.0068493151,0.0030769231,0.0004375,0.0036553525,0.0006435006,0.0762331839,1.0,0.0088390509
1.5.1.4.1-5,SI0EG-2-89,"(BOP) QUOTATION STAGE FUEL OIL FORWARDING SYSTEM EG (incl. PUMPS)",7112,"CCGTD1_IPS",TT_Task,"61662",-,-,-,100,TK_Complete,20/06/2017,26/05/2017,14/08/2017,20/08/2017,"SI0EG-2-99 FS","SI0EG-2-99","SI0EG-2-93 FS","SI0EG-2-93",98,132,106,144,23,30,24,33,7,,"CCGT D1_Integrated Programme Schedule;OEM (Engineering & Deliverables);BALANCE OF PLANT (BOP OPTION);FUEL OIL FORWARDING SYSTEM;Forwarding Station Liquid Fuel EGA",1,1,0.0000006211,0.001017294,0.0006103764,55,0.0,0.0002248823,0.0068493151,0.0030769231,0.0009375,0.0026109661,0.0019305019,0.1233183857,0.0,0.0588577002
1.5.1.4.1-6,SI0EG-2-93,"(BOP) ORDER PLACED FUEL OIL FORWARDING SYSTEM EG (incl. PUMPS)",7112,"CCGTD1_IPS",TT_Mile,"61662",-,-,-,100,TK_Complete,13/09/2017,21/08/2017,13/09/2017,21/08/2017,"SI0EG-2-89 FS","SI0EG-2-89","SI0EG-3-82 FS","SI0EG-3-82",111,144,111,144,25,33,25,33,11,,"CCGT D1_Integrated Programme Schedule;OEM (Engineering & Deliverables);BALANCE OF PLANT (BOP OPTION);FUEL OIL FORWARDING SYSTEM;Forwarding Station Liquid Fuel EGA",1,1,0.0000006625,0.0008138352,0.0008138352,0,1.0,0.0000812387,0.0068493151,0.0030769231,0.001,0.0020887728,0.0025740026,0.0,1.0,0.0
1.5.1.4.1-7,SI0EG-3-84,"(BOP) (RFS) READY FOR SHIPMENT FUEL OIL FORWARDING SYSTEM EG (incl. PUMPS)",7112,"CCGTD1_IPS",TT_FinMile,"61662",-,-,-,100,TK_Complete,02/07/2018,26/05/2018,02/07/2018,26/05/2018,"SI0EG-3-82 FS","SI0EG-3-82","SI0EG-4-42 FS","SI0EG-4-42",152,184,152,184,35,42,35,42,32,,"CCGT D1_Integrated Programme Schedule;OEM (Engineering & Deliverables);BALANCE OF PLANT (BOP OPTION);FUEL OIL FORWARDING SYSTEM;Forwarding Station Liquid Fuel EGA",1,1,0.0000004968,0.0004069176,0.0012207528,0,1.0,0.0000812387,0.0068493151,0.0030769231,0.00075,0.0010443864,0.0038610039,0.0,1.0,0.0
1.5.1.4.1-8,SI0EG-2-99,"(BOP) BASIC DESIGN, PREPARATION RFQ FUEL OIL FORWARDING SYSTEM EG (incl. PUMPS)",7112,"CCGTD1_IPS",TT_Task,"61662",-,-,-,100,TK_Complete,26/03/2017,11/03/2017,13/05/2017,25/05/2017,"SI0EG-2-87 FS","SI0EG-2-87","SI0EG-2-89 FS","SI0EG-2-89",86,121,93,131,20,28,21,30,3,,"CCGT D1_Integrated Programme Schedule;OEM (Engineering & Deliverables);BALANCE OF PLANT (BOP OPTION);FUEL OIL FORWARDING SYSTEM;Forwarding Station Liquid Fuel EGA",1,1,0.0000004968,0.0012207528,0.0004069176,48,0.0,0.0001687521,0.0068493151,0.0030769231,0.00075,0.0031331593,0.0012870013,0.1076233184,0.0,0.035858438
1.5.1.5,61659,"CARBON DIOXIDE SUPPLY PIPEWORK SYSTEM",7112,"CCGTD1_IPS",WBS,"61649",,,,100,Complete,01/05/2017,22/04/2017,06/09/2018,13/07/2018,,,,,91,127,162,191,21,29,37,44,,,"CCGT D1_Integrated Programme Schedule;OEM (Engineering & Deliverables);BALANCE OF PLANT (BOP OPTION)"
1.5.1.5.1,61660,"Supply Piping (NON- ALLOYED MATERIAL) & Support",7112,"CCGTD1_IPS",WBS,"61659",,,,100,Complete,01/05/2017,22/04/2017,06/09/2018,13/07/2018,,,,,91,127,162,191,21,29,37,44,,,"CCGT D1_Integrated Programme Schedule;OEM (Engineering & Deliverables);BALANCE OF PLANT (BOP OPTION);CARBON DIOXIDE SUPPLY PIPEWORK SYSTEM"
1.5.1.5.1-1,SI-MKG2-32,"(BOP) TECHNICAL CLARIFICATION CO2 SUPPLY SYSTEM",7112,"CCGTD1_IPS",TT_Task,"61660",-,-,-,100,TK_Complete,01/05/2017,22/04/2017,11/06/2017,02/06/2017,"","","SI-MKG2-35 FS","SI-MKG2-35",91,127,97,133,21,29,22,31,4,,"CCGT D1_Integrated Programme Schedule;OEM (Engineering & Deliverables);BALANCE OF PLANT (BOP OPTION);CARBON DIOXIDE SUPPLY PIPEWORK SYSTEM;Supply Piping (NON- ALLOYED MATERIAL) & Support",0,1,0.0,0.0014242116,0.0,41,1.0,0.0000812387,0.0,0.0030769231,0.0,0.0036553525,0.0,0.0919282511,1.0,0.0
1.5.1.5.1-2,SI-MKG2-50,"(BOP) ORDER PLACED CO2 SUPPLY SYSTEM",7112,"CCGTD1_IPS",TT_Mile,"61660",-,-,-,100,TK_Complete,26/09/2017,25/09/2017,26/09/2017,25/09/2017,"SI-MKG2-45 FS","SI-MKG2-45","SI-MKG3-94 FS","SI-MKG3-94",112,149,112,149,26,34,26,34,12,,"CCGT D1_Integrated Programme Schedule;OEM (Engineering & Deliverables);BALANCE OF PLANT (BOP OPTION);CARBON DIOXIDE SUPPLY PIPEWORK SYSTEM;Supply Piping (NON- ALLOYED MATERIAL) & Support",1,1,0.0000004968,0.0006103764,0.0008138352,0,1.0,0.0000812387,0.0068493151,0.0030769231,0.00075,0.0015665796,0.0025740026,0.0,1.0,0.0
1.5.1.5.1-3,SI-MKG2-40,"(BOP) RFQ CO2 SUPPLY SYSTEM",7112,"CCGTD1_IPS",TT_FinMile,"61660",-,-,-,100,TK_Complete,14/09/2017,13/08/2017,14/09/2017,13/08/2017,"SI-MKG2-35 FS","SI-MKG2-35","SI-MKG2-45 FS","SI-MKG2-45",111,143,111,143,25,33,25,33,11,,"CCGT D1_Integrated Programme Schedule;OEM (Engineering & Deliverables);BALANCE OF PLANT (BOP OPTION);CARBON DIOXIDE SUPPLY PIPEWORK SYSTEM;Supply Piping (NON- ALLOYED MATERIAL) & Support",1,1,0.000000414,0.001017294,0.0004069176,0,1.0,0.0000812387,0.0068493151,0.0030769231,0.000625,0.0026109661,0.0012870013,0.0,1.0,0.0
1.5.1.5.1-4,SI-MKG2-45,"(BOP) QUOTATION STAGE CO2 SUPPLY SYSTEM",7112,"CCGTD1_IPS",TT_Task,"61660",-,-,-,100,TK_Complete,15/09/2017,14/08/2017,26/10/2017,24/09/2017,"SI-MKG2-40 FS","SI-MKG2-40","SI-MKG2-50 FS","SI-MKG2-50",111,143,117,149,25,33,27,34,11,,"CCGT D1_Integrated Programme Schedule;OEM (Engineering & Deliverables);BALANCE OF PLANT (BOP OPTION);CARBON DIOXIDE SUPPLY PIPEWORK SYSTEM;Supply Piping (NON- ALLOYED MATERIAL) & Support",1,1,0.0000004968,0.0008138352,0.0006103764,41,1.0,0.0001503957,0.0068493151,0.0030769231,0.00075,0.0020887728,0.0019305019,0.0919282511,1.0,0.0283369572
1.5.1.5.1-5,SI-MKG3-96,"(BOP) (RFS) READY FOR SHIPMENT CO2 SUPPLY SYSTEM",7112,"CCGTD1_IPS",TT_FinMile,"61660",-,-,-,100,TK_Complete,08/07/2018,11/05/2018,08/07/2018,11/05/2018,"SI-MKG3-94 FS","SI-MKG3-94","SI-MKG4-62 FS","SI-MKG4-62",153,182,153,182,35,42,35,42,32,,"CCGT D1_Integrated Programme Schedule;OEM (Engineering & Deliverables);BALANCE OF PLANT (BOP OPTION);CARBON DIOXIDE SUPPLY PIPEWORK SYSTEM;Supply Piping (NON- ALLOYED MATERIAL) & Support",1,1,0.0000002484,0.0002034588,0.0012207528,0,1.0,0.0000812387,0.0068493151,0.0030769231,0.000375,0.0005221932,0.0038610039,0.0,1.0,0.0
1.5.1.5.1-6,SI-MKG3-94,"(BOP) MANUFACTURING, SHOP TEST CO2 SUPPLY SYSTEM",7112,"CCGTD1_IPS",TT_Task,"61660",-,-,-,100,TK_Complete,26/09/2017,25/09/2017,02/06/2018,11/05/2018,"SI-MKG2-50 FS","SI-MKG2-50","SI-MKG3-96 FS","SI-MKG3-96",112,149,148,182,26,34,34,42,12,,"CCGT D1_Integrated Programme Schedule;OEM (Engineering & Deliverables);BALANCE OF PLANT (BOP OPTION);CARBON DIOXIDE SUPPLY PIPEWORK SYSTEM;Supply Piping (NON- ALLOYED MATERIAL) & Support",1,1,0.000000414,0.0004069176,0.001017294,249,1.0,0.0001503957,0.0068493151,0.0030769231,0.000625,0.0010443864,0.0032175032,0.5582959641,1.0,0.0283369572
1.5.1.5.1-7,SI-MKG4-62,"(BOP) TRANSPORT CO2 SUPPLY SYSTEM",7112,"CCGTD1_IPS",TT_Task,"61660",-,-,-,100,TK_Complete,09/07/2018,12/05/2018,06/09/2018,13/07/2018,"SI-MKG3-96 FS","SI-MKG3-96","","",153,182,162,191,35,42,37,44,32,,"CCGT D1_Integrated Programme Schedule;OEM (Engineering & Deliverables);BALANCE OF PLANT (BOP OPTION);CARBON DIOXIDE SUPPLY PIPEWORK SYSTEM;Supply Piping (NON- ALLOYED MATERIAL) & Support",1,0,0.0,0.0,0.0014242116,59,1.0,0.0001503957,0.0068493151,0.0,0.0,0.0,0.0045045045,0.1322869955,1.0,0.0283369572
1.5.1.5.1-8,SI-MKG2-35,"(BOP) BASIC DESIGN, SPECIFICATION CO2 SUPPLY SYSTEM (incl. FSD COMPLIANCE CHECK)",7112,"CCGTD1_IPS",TT_Task,"61660",-,-,-,100,TK_Complete,28/06/2017,03/06/2017,07/09/2017,13/08/2017,"SI-MKG2-32 FS","SI-MKG2-32","SI-MKG2-40 FS","SI-MKG2-40",100,133,110,143,23,31,25,33,8,,"CCGT D1_Integrated Programme Schedule;OEM (Engineering & Deliverables);BALANCE OF PLANT (BOP OPTION);CARBON DIOXIDE SUPPLY PIPEWORK SYSTEM;Supply Piping (NON- ALLOYED MATERIAL) & Support",1,1,0.0000002484,0.0012207528,0.0002034588,71,1.0,0.0001503957,0.0068493151,0.0030769231,0.000375,0.0031331593,0.0006435006,0.1591928251,1.0,0.0283369572
1.5.1.6,61657,"HYDROGEN SUPPLY PIPEWORK SYSTEM",7112,"CCGTD1_IPS",WBS,"61649",,,,100,Complete,01/05/2017,22/04/2017,06/09/2018,13/07/2018,,,,,91,127,162,191,21,29,37,44,,,"CCGT D1_Integrated Programme Schedule;OEM (Engineering & Deliverables);BALANCE OF PLANT (BOP OPTION)"
1.5.1.6.1,61658,"Supply Piping (NON- ALLOYED MATERIAL) & Support",7112,"CCGTD1_IPS",WBS,"61657",,,,100,Complete,01/05/2017,22/04/2017,06/09/2018,13/07/2018,,,,,91,127,162,191,21,29,37,44,,,"CCGT D1_Integrated Programme Schedule;OEM (Engineering & Deliverables);BALANCE OF PLANT (BOP OPTION);HYDROGEN SUPPLY PIPEWORK SYSTEM"
1.5.1.6.1-1,SI-MBH2-10,"(BOP) TECHNICAL CLARIFICATION HYDROGEN SUPPLY SYSTEM",7112,"CCGTD1_IPS",TT_Task,"61658",-,-,-,100,TK_Complete,01/05/2017,22/04/2017,11/06/2017,02/06/2017,"","","SI-MBH2-15 FS","SI-MBH2-15",91,127,97,133,21,29,22,31,4,,"CCGT D1_Integrated Programme Schedule;OEM (Engineering & Deliverables);BALANCE OF PLANT (BOP OPTION);HYDROGEN SUPPLY PIPEWORK SYSTEM;Supply Piping (NON- ALLOYED MATERIAL) & Support",0,1,0.0,0.0014242116,0.0,41,1.0,0.0000812387,0.0,0.0030769231,0.0,0.0036553525,0.0,0.0919282511,1.0,0.0
1.5.1.6.1-2,SI-MBH2-30,"(BOP) ORDER PLACED HYDROGEN SUPPLY SYSTEM",7112,"CCGTD1_IPS",TT_Mile,"61658",-,-,-,100,TK_Complete,26/09/2017,25/09/2017,26/09/2017,25/09/2017,"SI-MBH2-25 FS","SI-MBH2-25","SI-MBH3-90 FS","SI-MBH3-90",112,149,112,149,26,34,26,34,11,,"CCGT D1_Integrated Programme Schedule;OEM (Engineering & Deliverables);BALANCE OF PLANT (BOP OPTION);HYDROGEN SUPPLY PIPEWORK SYSTEM;Supply Piping (NON- ALLOYED MATERIAL) & Support",1,1,0.0000004968,0.0006103764,0.0008138352,0,1.0,0.0000812387,0.0068493151,0.0030769231,0.00075,0.0015665796,0.0025740026,0.0,1.0,0.0
1.5.1.6.1-3,SI-MBH2-20,"(BOP) RFQ HYDROGEN SUPPLY SYSTEM",7112,"CCGTD1_IPS",TT_FinMile,"61658",-,-,-,100,TK_Complete,14/09/2017,13/08/2017,14/09/2017,13/08/2017,"SI-MBH2-15 FS","SI-MBH2-15","SI-MBH2-25 FS","SI-MBH2-25",111,143,111,143,25,33,25,33,11,,"CCGT D1_Integrated Programme Schedule;OEM (Engineering & Deliverables);BALANCE OF PLANT (BOP OPTION);HYDROGEN SUPPLY PIPEWORK SYSTEM;Supply Piping (NON- ALLOYED MATERIAL) & Support",1,1,0.000000414,0.001017294,0.0004069176,0,1.0,0.0000812387,0.0068493151,0.0030769231,0.000625,0.0026109661,0.0012870013,0.0,1.0,0.0
1.5.1.6.1-4,SI-MBH2-25,"(BOP) QUOTATION STAGE HYDROGEN SUPPLY SYSTEM",7112,"CCGTD1_IPS",TT_Task,"61658",-,-,-,100,TK_Complete,15/09/2017,14/08/2017,26/10/2017,24/09/2017,"SI-MBH2-20 FS","SI-MBH2-20","SI-MBH2-30 FS","SI-MBH2-30",111,143,117,149,25,33,27,34,11,,"CCGT D1_Integrated Programme Schedule;OEM (Engineering & Deliverables);BALANCE OF PLANT (BOP OPTION);HYDROGEN SUPPLY PIPEWORK SYSTEM;Supply Piping (NON- ALLOYED MATERIAL) & Support",1,1,0.0000004968,0.0008138352,0.0006103764,41,1.0,0.0001503957,0.0068493151,0.0030769231,0.00075,0.0020887728,0.0019305019,0.0919282511,1.0,0.0283369572
1.5.1.6.1-5,SI-MBH3-92,"(BOP) (RFS) READY FOR SHIPMENT HYDROGEN SUPPLY SYSTEM",7112,"CCGTD1_IPS",TT_FinMile,"61658",-,-,-,100,TK_Complete,08/07/2018,11/05/2018,08/07/2018,11/05/2018,"SI-MBH3-90 FS","SI-MBH3-90","SI-MBH4-60 FS","SI-MBH4-60",153,182,153,182,35,42,35,42,32,,"CCGT D1_Integrated Programme Schedule;OEM (Engineering & Deliverables);BALANCE OF PLANT (BOP OPTION);HYDROGEN SUPPLY PIPEWORK SYSTEM;Supply Piping (NON- ALLOYED MATERIAL) & Support",1,1,0.0000002484,0.0002034588,0.0012207528,0,1.0,0.0000812387,0.0068493151,0.0030769231,0.000375,0.0005221932,0.0038610039,0.0,1.0,0.0
1.5.1.6.1-6,SI-MBH3-90,"(BOP) MANUFACTURING, SHOP TEST HYDROGEN SUPPLY SYSTEM",7112,"CCGTD1_IPS",TT_Task,"61658",-,-,-,100,TK_Complete,26/09/2017,25/09/2017,02/06/2018,11/05/2018,"SI-MBH2-30 FS","SI-MBH2-30","SI-MBH3-92 FS","SI-MBH3-92",112,149,148,182,26,34,34,42,11,,"CCGT D1_Integrated Programme Schedule;OEM (Engineering & Deliverables);BALANCE OF PLANT (BOP OPTION);HYDROGEN SUPPLY PIPEWORK SYSTEM;Supply Piping (NON- ALLOYED MATERIAL) & Support",1,1,0.000000414,0.0004069176,0.001017294,249,1.0,0.0001503957,0.0068493151,0.0030769231,0.000625,0.0010443864,0.0032175032,0.5582959641,1.0,0.0283369572
1.5.1.6.1-7,SI-MBH4-60,"(BOP) TRANSPORT HYDROGEN SUPPLY SYSTEM",7112,"CCGTD1_IPS",TT_Task,"61658",-,-,-,100,TK_Complete,09/07/2018,12/05/2018,06/09/2018,13/07/2018,"SI-MBH3-92 FS","SI-MBH3-92","","",153,182,162,191,35,42,37,44,32,,"CCGT D1_Integrated Programme Schedule;OEM (Engineering & Deliverables);BALANCE OF PLANT (BOP OPTION);HYDROGEN SUPPLY PIPEWORK SYSTEM;Supply Piping (NON- ALLOYED MATERIAL) & Support",1,0,0.0,0.0,0.0014242116,59,0.8,0.0001503957,0.0068493151,0.0,0.0,0.0,0.0045045045,0.1322869955,0.8,0.0283369572
1.5.1.6.1-8,SI-MBH2-15,"(BOP) BASIC DESIGN, SPECIFICATION HYDROGEN SUPPLY SYSTEM (incl. FSD COMPLIANCE CHECK)",7112,"CCGTD1_IPS",TT_Task,"61658",-,-,-,100,TK_Complete,28/06/2017,03/06/2017,07/09/2017,13/08/2017,"SI-MBH2-10 FS","SI-MBH2-10","SI-MBH2-20 FS","SI-MBH2-20",100,133,110,143,23,31,25,33,8,,"CCGT D1_Integrated Programme Schedule;OEM (Engineering & Deliverables);BALANCE OF PLANT (BOP OPTION);HYDROGEN SUPPLY PIPEWORK SYSTEM;Supply Piping (NON- ALLOYED MATERIAL) & Support",1,1,0.0000002484,0.0012207528,0.0002034588,71,1.0,0.0001503957,0.0068493151,0.0030769231,0.000375,0.0031331593,0.0006435006,0.1591928251,1.0,0.0283369572
1.5.1.7,61655,"6.6kV CONNECTION SYSTEM",7112,"CCGTD1_IPS",WBS,"61649",,,,100,Complete,01/04/2017,23/03/2017,30/08/2018,20/08/2018,,,,,87,122,161,196,20,28,37,45,,,"CCGT D1_Integrated Programme Schedule;OEM (Engineering & Deliverables);BALANCE OF PLANT (BOP OPTION)"
1.5.1.7.1,61656,"MV Cables BZK",7112,"CCGTD1_IPS",WBS,"61655",,,,100,Complete,01/04/2017,23/03/2017,30/08/2018,20/08/2018,,,,,87,122,161,196,20,28,37,45,,,"CCGT D1_Integrated Programme Schedule;OEM (Engineering & Deliverables);BALANCE OF PLANT (BOP OPTION);6.6kV CONNECTION SYSTEM"
1.5.1.7.1-1,SI-BZK3-84,"(BOP) (RFS) READY FOR SHIPMENT MV CABLES BZK",7112,"CCGTD1_IPS",TT_FinMile,"61656",-,-,-,100,TK_Complete,01/07/2018,31/07/2018,01/07/2018,31/07/2018,"SI-BZK3-86 FS","SI-BZK3-86","SI-BZK4-62 FS","SI-BZK4-62",152,193,152,193,35,45,35,45,31,,"CCGT D1_Integrated Programme Schedule;OEM (Engineering & Deliverables);BALANCE OF PLANT (BOP OPTION);6.6kV CONNECTION SYSTEM;MV Cables BZK",1,1,0.0000002898,0.0002034588,0.0014242116,0,1.0,0.0000812387,0.0068493151,0.0030769231,0.0004375,0.0005221932,0.0045045045,0.0,1.0,0.0
1.5.1.7.1-2,SI-BZK3-82,"(BOP) MANUFACTURING, SHOP TEST MV CABLES BZK",7112,"CCGTD1_IPS",TT_Task,"61656",-,-,-,100,TK_Complete,26/08/2017,25/08/2017,12/05/2018,10/07/2018,"SI-BZK2-93 FS","SI-BZK2-93","SI-BZK3-86 FS","SI-BZK3-86",108,145,145,190,25,33,33,44,10,,"CCGT D1_Integrated Programme Schedule;OEM (Engineering & Deliverables);BALANCE OF PLANT (BOP OPTION);6.6kV CONNECTION SYSTEM;MV Cables BZK",1,1,0.0000006211,0.0006103764,0.001017294,259,0.0,0.0001503957,0.0068493151,0.0030769231,0.0009375,0.0015665796,0.0032175032,0.5807174888,0.0,0.0283369572
1.5.1.7.1-3,SI-BZK4-62,"(BOP) TRANSPORT MV CABLES BZK",7112,"CCGTD1_IPS",TT_Task,"61656",-,-,-,100,TK_Complete,02/07/2018,03/08/2018,30/08/2018,20/08/2018,"SI-BZK3-84 FS","SI-BZK3-84","","",152,194,161,196,35,45,37,45,32,,"CCGT D1_Integrated Programme Schedule;OEM (Engineering & Deliverables);BALANCE OF PLANT (BOP OPTION);6.6kV CONNECTION SYSTEM;MV Cables BZK",1,0,0.0,0.0,0.0016276704,59,1.0,0.0001503957,0.0068493151,0.0,0.0,0.0,0.0051480051,0.1322869955,1.0,0.0283369572
1.5.1.7.1-4,SI-BZK2-87,"(BOP) TECHNICAL CLARIFICATION MV CABLES BZK",7112,"CCGTD1_IPS",TT_Task,"61656",-,-,-,100,TK_Complete,01/04/2017,23/03/2017,28/04/2017,19/04/2017,"","","SI-BZK2-135 FS","SI-BZK2-135",87,122,91,126,20,28,21,29,4,,"CCGT D1_Integrated Programme Schedule;OEM (Engineering & Deliverables);BALANCE OF PLANT (BOP OPTION);6.6kV CONNECTION SYSTEM;MV Cables BZK",0,1,0.0,0.0016276704,0.0,27,1.0,0.0000812387,0.0,0.0030769231,0.0,0.0041775457,0.0,0.0605381166,1.0,0.0
1.5.1.7.1-5,SI-BZK2-135,"(BOP) BASIC DESIGN, SPECIFICATION MV CABLES BZK",7112,"CCGTD1_IPS",TT_Task,"61656",-,-,-,100,TK_Complete,20/05/2017,20/04/2017,16/06/2017,17/05/2017,"SI-BZK2-87 FS","SI-BZK2-87","SI-BZK2-89 FS","SI-BZK2-89",94,126,98,130,22,29,22,30,5,,"CCGT D1_Integrated Programme Schedule;OEM (Engineering & Deliverables);BALANCE OF PLANT (BOP OPTION);6.6kV CONNECTION SYSTEM;MV Cables BZK",1,1,0.0000002898,0.0014242116,0.0002034588,27,1.0,0.0001503957,0.0068493151,0.0030769231,0.0004375,0.0036553525,0.0006435006,0.0605381166,1.0,0.0283369572
1.5.1.7.1-6,SI-BZK2-93,"(BOP) ORDER PLACED MV CABLES BZK",7112,"CCGTD1_IPS",TT_Mile,"61656",-,-,-,100,TK_Complete,26/08/2017,25/08/2017,26/08/2017,25/08/2017,"SI-BZK2-91 FS","SI-BZK2-91","SI-BZK3-82 FS","SI-BZK3-82",108,145,108,145,25,33,25,33,10,,"CCGT D1_Integrated Programme Schedule;OEM (Engineering & Deliverables);BALANCE OF PLANT (BOP OPTION);6.6kV CONNECTION SYSTEM;MV Cables BZK",1,1,0.0000006625,0.0008138352,0.0008138352,0,1.0,0.0000812387,0.0068493151,0.0030769231,0.001,0.0020887728,0.0025740026,0.0,1.0,0.0
1.5.1.7.1-7,SI-BZK2-89,"(BOP) RFQ MV CABLES BZK",7112,"CCGTD1_IPS",TT_FinMile,"61656",-,-,-,100,TK_Complete,17/06/2017,17/05/2017,17/06/2017,17/05/2017,"SI-BZK2-135 FS","SI-BZK2-135","SI-BZK2-91 FS","SI-BZK2-91",98,130,98,130,22,30,22,30,7,,"CCGT D1_Integrated Programme Schedule;OEM (Engineering & Deliverables);BALANCE OF PLANT (BOP OPTION);6.6kV CONNECTION SYSTEM;MV Cables BZK",1,1,0.0000004968,0.0012207528,0.0004069176,0,1.0,0.0000812387,0.0068493151,0.0030769231,0.00075,0.0031331593,0.0012870013,0.0,1.0,0.0
1.5.1.7.1-8,SI-BZK2-91,"(BOP) QUOTATION STAGE MV CABLES BZK",7112,"CCGTD1_IPS",TT_Task,"61656",-,-,-,100,TK_Complete,18/06/2017,18/05/2017,29/07/2017,24/08/2017,"SI-BZK2-89 FS","SI-BZK2-89","SI-BZK2-93 FS","SI-BZK2-93",98,130,104,144,23,30,24,33,7,,"CCGT D1_Integrated Programme Schedule;OEM (Engineering & Deliverables);BALANCE OF PLANT (BOP OPTION);6.6kV CONNECTION SYSTEM;MV Cables BZK",1,1,0.0000006211,0.001017294,0.0006103764,41,0.0,0.0001503957,0.0068493151,0.0030769231,0.0009375,0.0026109661,0.0019305019,0.0919282511,0.0,0.0283369572
1.5.1.7.1-9,SI-BZK3-86,"(BOP) FINAL CHECK BEFORE SHIPMENT MV CABLES BZK",7112,"CCGTD1_IPS",TT_Task,"61656",-,-,-,100,TK_Complete,18/06/2018,27/06/2018,01/07/2018,10/07/2018,"SI-BZK3-82 FS","SI-BZK3-82","SI-BZK3-84 FS","SI-BZK3-84",150,188,152,190,35,44,35,44,30,,"CCGT D1_Integrated Programme Schedule;OEM (Engineering & Deliverables);BALANCE OF PLANT (BOP OPTION);6.6kV CONNECTION SYSTEM;MV Cables BZK",1,1,0.0000004968,0.0004069176,0.0012207528,13,1.0,0.000209244,0.0068493151,0.0030769231,0.00075,0.0010443864,0.0038610039,0.0291479821,1.0,0.0524499399
1.5.1.8,61653,"FUEL GAS SUPPLY PIPEWORK SYSTEM",7112,"CCGTD1_IPS",WBS,"61649",,,,100,Complete,01/02/2017,21/01/2017,04/07/2018,29/05/2018,,,,,79,114,153,184,18,26,35,43,,,"CCGT D1_Integrated Programme Schedule;OEM (Engineering & Deliverables);BALANCE OF PLANT (BOP OPTION)"
1.5.1.8.1,61654,"Fuel Gas Supply Pipework EK (Additional Isolating Valves Only)",7112,"CCGTD1_IPS",WBS,"61653",,,,100,Complete,01/02/2017,21/01/2017,04/07/2018,29/05/2018,,,,,79,114,153,184,18,26,35,43,,,"CCGT D1_Integrated Programme Schedule;OEM (Engineering & Deliverables);BALANCE OF PLANT (BOP OPTION);FUEL GAS SUPPLY PIPEWORK SYSTEM"
1.5.1.8.1-1,SI-EK-2-89,"(BOP) QUOTATION STAGE FUEL GAS SUPPLY SYSTEM EK (Add. ISOLATING VALVES ONLY)",7112,"CCGTD1_IPS",TT_Task,"61654",-,-,-,100,TK_Complete,13/06/2017,13/05/2017,03/07/2017,02/06/2017,"SI-EK-2-87 FS,SI-EK-2-97 FS","SI-EK-2-87,SI-EK-2-97","SI-EK-2-91 FS","SI-EK-2-91",97,130,100,133,22,30,23,31,7,,"CCGT D1_Integrated Programme Schedule;OEM (Engineering & Deliverables);BALANCE OF PLANT (BOP OPTION);FUEL GAS SUPPLY PIPEWORK SYSTEM;Fuel Gas Supply Pipework EK (Additional Isolating Valves Only)",2,1,0.000000414,0.001017294,0.0004069176,20,1.0,0.0001927792,0.0136986301,0.0030769231,0.000625,0.0026109661,0.0012870013,0.0448430493,1.0,0.0457035003
1.5.1.8.1-2,SI-EK-2-91,"(BOP) ORDER PLACED FUEL GAS SUPPLY SYSTEM EK (Add. ISOLATING VALVES ONLY)",7112,"CCGTD1_IPS",TT_Mile,"61654",-,-,-,100,TK_Complete,28/06/2017,03/06/2017,28/06/2017,03/06/2017,"SI-EK-2-89 FS","SI-EK-2-89","SI-EK-3-82 FS","SI-EK-3-82",100,133,100,133,23,31,23,31,8,,"CCGT D1_Integrated Programme Schedule;OEM (Engineering & Deliverables);BALANCE OF PLANT (BOP OPTION);FUEL GAS SUPPLY PIPEWORK SYSTEM;Fuel Gas Supply Pipework EK (Additional Isolating Valves Only)",1,1,0.0000004968,0.0008138352,0.0006103764,0,1.0,0.0000812387,0.0068493151,0.0030769231,0.00075,0.0020887728,0.0019305019,0.0,1.0,0.0
1.5.1.8.1-3,SI-EK-2-87,"(BOP) BASIC DESIGN, PREPARATION RFQ FUEL GAS SUPPLY SYSTEM EK (Add. ISOLATING VALVES ONLY)",7112,"CCGTD1_IPS",TT_Task,"61654",-,-,-,100,TK_Complete,01/04/2017,18/03/2017,26/05/2017,12/05/2017,"SI-EK-2-97 FS","SI-EK-2-97","SI-EK-2-89 FS","SI-EK-2-89",87,122,95,130,20,28,22,30,4,,"CCGT D1_Integrated Programme Schedule;OEM (Engineering & Deliverables);BALANCE OF PLANT (BOP OPTION);FUEL GAS SUPPLY PIPEWORK SYSTEM;Fuel Gas Supply Pipework EK (Additional Isolating Valves Only)",1,1,0.0,0.0012207528,0.0002034588,55,1.0,0.0001161345,0.0068493151,0.0030769231,0.0,0.0031331593,0.0006435006,0.1233183857,1.0,0.0142984646
1.5.1.8.1-4,SI-EK-3-82,"(BOP) DETAIL DESIGN, MANUFACTURING FUEL GAS SUPPLY SYSTEM EK (Add. ISOLATING VALVES ONLY)",7112,"CCGTD1_IPS",TT_Task,"61654",-,-,-,100,TK_Complete,26/06/2017,03/06/2017,21/04/2018,23/03/2018,"SI-EK-2-91 FS","SI-EK-2-91","SI-EK-3-86 FS","SI-EK-3-86",99,133,142,175,23,31,33,40,8,,"CCGT D1_Integrated Programme Schedule;OEM (Engineering & Deliverables);BALANCE OF PLANT (BOP OPTION);FUEL GAS SUPPLY PIPEWORK SYSTEM;Fuel Gas Supply Pipework EK (Additional Isolating Valves Only)",1,1,0.0000004968,0.0006103764,0.0008138352,299,1.0,0.0001503957,0.0068493151,0.0030769231,0.00075,0.0015665796,0.0025740026,0.6704035874,1.0,0.0283369572
1.5.1.8.1-5,SI-EK-4-42,"(BOP) TRANSPORT FUEL GAS SUPPLY SYSTEM EK (Add. ISOLATING VALVES ONLY)",7112,"CCGTD1_IPS",TT_Task,"61654",-,-,-,100,TK_Complete,06/05/2018,22/04/2018,04/07/2018,29/05/2018,"SI-EK-3-86 FS","SI-EK-3-86","SI-EK-4-48 FS","SI-EK-4-48",144,179,153,184,33,41,35,43,27,,"CCGT D1_Integrated Programme Schedule;OEM (Engineering & Deliverables);BALANCE OF PLANT (BOP OPTION);FUEL GAS SUPPLY PIPEWORK SYSTEM;Fuel Gas Supply Pipework EK (Additional Isolating Valves Only)",1,1,0.0000002484,0.0002034588,0.0012207528,59,1.0,0.0001503957,0.0068493151,0.0030769231,0.000375,0.0005221932,0.0038610039,0.1322869955,1.0,0.0283369572
1.5.1.8.1-6,SI-EK-4-48,"(OTD-OS) (BOP) ON SITE FUEL GAS SUPPLY SYSTEM EK (Add. ISOLATING VALVES ONLY)",7112,"CCGTD1_IPS",TT_FinMile,"61654",-,-,-,100,TK_Complete,04/07/2018,29/05/2018,04/07/2018,29/05/2018,"SI-EK-4-42 FS","SI-EK-4-42","","",153,184,153,184,35,43,35,43,32,,"CCGT D1_Integrated Programme Schedule;OEM (Engineering & Deliverables);BALANCE OF PLANT (BOP OPTION);FUEL GAS SUPPLY PIPEWORK SYSTEM;Fuel Gas Supply Pipework EK (Additional Isolating Valves Only)",1,0,0.0,0.0,0.0014242116,0,1.0,0.0000812387,0.0068493151,0.0,0.0,0.0,0.0045045045,0.0,1.0,0.0
1.5.1.8.1-7,SI-EK-3-86,"(BOP) (RFS) READY FOR SHIPMENT GAS SYSTEM EK (Add. ISOLATING VALVES ONLY)",7112,"CCGTD1_IPS",TT_FinMile,"61654",-,-,-,100,TK_Complete,05/05/2018,29/03/2018,05/05/2018,29/03/2018,"SI-EK-3-82 FS","SI-EK-3-82","SI-EK-4-42 FS","SI-EK-4-42",144,175,144,175,33,41,33,41,27,,"CCGT D1_Integrated Programme Schedule;OEM (Engineering & Deliverables);BALANCE OF PLANT (BOP OPTION);FUEL GAS SUPPLY PIPEWORK SYSTEM;Fuel Gas Supply Pipework EK (Additional Isolating Valves Only)",1,1,0.000000414,0.0004069176,0.001017294,0,1.0,0.0000812387,0.0068493151,0.0030769231,0.000625,0.0010443864,0.0032175032,0.0,1.0,0.0
1.5.1.8.1-8,SI-EK-2-97,"(BOP) TECHNICAL CLARIFICATION FUEL GAS SUPPLY SYSTEM EK (Add. ISOLATING VALVES ONLY)",7112,"CCGTD1_IPS",TT_Task,"61654",-,-,-,100,TK_Complete,01/02/2017,21/01/2017,28/03/2017,17/03/2017,"","","SI0EG-2-87 SS,SI-EK-2-87 FS,SI-EK-2-89 FS","SI0EG-2-87,SI-EK-2-87,SI-EK-2-89",79,114,86,122,18,26,20,28,2,,"CCGT D1_Integrated Programme Schedule;OEM (Engineering & Deliverables);BALANCE OF PLANT (BOP OPTION);FUEL GAS SUPPLY PIPEWORK SYSTEM;Fuel Gas Supply Pipework EK (Additional Isolating Valves Only)",0,3,0.0,0.003051882,0.0,55,1.0,0.0000812387,0.0,0.0092307692,0.0,0.0078328982,0.0,0.1233183857,1.0,0.0
1.5.1.9,61650,"FIRE FIGHTING CONNECTION PIPEWORK SYSTEM",7112,"CCGTD1_IPS",WBS,"61649",,,,100,Complete,14/01/2017,10/12/2016,30/08/2018,21/08/2018,,,,,76,108,161,196,17,25,37,45,,,"CCGT D1_Integrated Programme Schedule;OEM (Engineering & Deliverables);BALANCE OF PLANT (BOP OPTION)"
1.5.1.9.1,61652,"Fire Main incl. Valves, Hydrants, etc.",7112,"CCGTD1_IPS",WBS,"61650",,,,100,Complete,01/03/2017,25/02/2017,30/08/2018,21/08/2018,,,,,83,119,161,196,19,27,37,45,,,"CCGT D1_Integrated Programme Schedule;OEM (Engineering & Deliverables);BALANCE OF PLANT (BOP OPTION);FIRE FIGHTING CONNECTION PIPEWORK SYSTEM"
1.5.1.9.1-1,SI-SG-2-10,"(BOP) ORDER PLACED FIRE FIGHTING SYSTEM SG",7112,"CCGTD1_IPS",TT_Mile,"61652",-,-,-,100,TK_Complete,26/08/2017,18/08/2017,26/08/2017,18/08/2017,"SI-SG-2-99 FS","SI-SG-2-99","SI-SG-3-86 FS","SI-SG-3-86",108,144,108,144,25,33,25,33,10,,"CCGT D1_Integrated Programme Schedule;OEM (Engineering & Deliverables);BALANCE OF PLANT (BOP OPTION);FIRE FIGHTING CONNECTION PIPEWORK SYSTEM;Fire Main incl. Valves, Hydrants, etc.",1,1,0.0000004968,0.0006103764,0.0008138352,0,1.0,0.0000812387,0.0068493151,0.0030769231,0.00075,0.0015665796,0.0025740026,0.0,1.0,0.0
1.5.1.9.1-2,SI-SG-2-97,"(BOP) RFQ FIRE FIGHTING SYSTEM SG",7112,"CCGTD1_IPS",TT_FinMile,"61652",-,-,-,100,TK_Complete,21/05/2017,31/03/2017,21/05/2017,31/03/2017,"SI-SG-2-96 FS","SI-SG-2-96","SI-SG-2-99 FS","SI-SG-2-99",94,124,94,124,22,28,22,28,5,,"CCGT D1_Integrated Programme Schedule;OEM (Engineering & Deliverables);BALANCE OF PLANT (BOP OPTION);FIRE FIGHTING CONNECTION PIPEWORK SYSTEM;Fire Main incl. Valves, Hydrants, etc.",1,1,0.000000414,0.001017294,0.0004069176,0,1.0,0.0000812387,0.0068493151,0.0030769231,0.000625,0.0026109661,0.0012870013,0.0,1.0,0.0
1.5.1.9.1-3,SI-SG-2-99,"(BOP) QUOTATION STAGE FIRE FIGHTING SYSTEM SG",7112,"CCGTD1_IPS",TT_Task,"61652",-,-,-,100,TK_Complete,22/05/2017,01/04/2017,30/06/2017,19/06/2017,"SI-SG-2-97 FS","SI-SG-2-97","SI-SG-2-10 FS","SI-SG-2-10",94,124,100,135,22,28,23,31,5,,"CCGT D1_Integrated Programme Schedule;OEM (Engineering & Deliverables);BALANCE OF PLANT (BOP OPTION);FIRE FIGHTING CONNECTION PIPEWORK SYSTEM;Fire Main incl. Valves, Hydrants, etc.",1,1,0.0000004968,0.0008138352,0.0006103764,39,0.0,0.0001503957,0.0068493151,0.0030769231,0.00075,0.0020887728,0.0019305019,0.0874439462,0.0,0.0283369572
1.5.1.9.1-4,SI-SG-3-88,"(BOP) (RFS) READY FOR SHIPMENT FIRE FIGHTING SYSTEM SG",7112,"CCGTD1_IPS",TT_FinMile,"61652",-,-,-,100,TK_Complete,05/07/2018,16/08/2018,05/07/2018,16/08/2018,"SI-SG-3-86 FS","SI-SG-3-86","SI-SG-4-58 FS","SI-SG-4-58",153,195,153,195,35,45,35,45,32,,"CCGT D1_Integrated Programme Schedule;OEM (Engineering & Deliverables);BALANCE OF PLANT (BOP OPTION);FIRE FIGHTING CONNECTION PIPEWORK SYSTEM;Fire Main incl. Valves, Hydrants, etc.",1,1,0.0000002484,0.0002034588,0.0012207528,0,1.0,0.0000812387,0.0068493151,0.0030769231,0.000375,0.0005221932,0.0038610039,0.0,1.0,0.0
1.5.1.9.1-5,SI-SG-3-86,"(BOP) MANUFACTURING, SHOP TEST FIRE FIGHTING SYSTEM SG",7112,"CCGTD1_IPS",TT_Task,"61652",-,-,-,100,TK_Complete,26/08/2017,18/08/2017,07/01/2018,15/08/2018,"SI-SG-2-10 FS","SI-SG-2-10","SI-SG-3-88 FS","SI-SG-3-88",108,144,127,195,25,33,29,45,10,,"CCGT D1_Integrated Programme Schedule;OEM (Engineering & Deliverables);BALANCE OF PLANT (BOP OPTION);FIRE FIGHTING CONNECTION PIPEWORK SYSTEM;Fire Main incl. Valves, Hydrants, etc.",1,1,0.000000414,0.0004069176,0.001017294,134,0.0,0.0001503957,0.0068493151,0.0030769231,0.000625,0.0010443864,0.0032175032,0.3004484305,0.0,0.0283369572
1.5.1.9.1-6,SI-SG-4-58,"(BOP) TRANSPORT FIRE FIGHTING SYSTEM SG",7112,"CCGTD1_IPS",TT_Task,"61652",-,-,-,100,TK_Complete,06/07/2018,17/08/2018,30/08/2018,21/08/2018,"SI-SG-3-88 FS","SI-SG-3-88","","",153,196,161,196,35,45,37,45,32,,"CCGT D1_Integrated Programme Schedule;OEM (Engineering & Deliverables);BALANCE OF PLANT (BOP OPTION);FIRE FIGHTING CONNECTION PIPEWORK SYSTEM;Fire Main incl. Valves, Hydrants, etc.",1,0,0.0,0.0,0.0014242116,55,1.0,0.0001503957,0.0068493151,0.0,0.0,0.0,0.0045045045,0.1233183857,1.0,0.0283369572
1.5.1.9.1-7,SI-SG-2-95,"(BOP) TECHNICAL CLARIFICATION FIRE FIGHTING SYSTEM SG",7112,"CCGTD1_IPS",TT_Task,"61652",-,-,-,100,TK_Complete,01/03/2017,25/02/2017,28/03/2017,24/03/2017,"","","SI-SG-2-96 FS","SI-SG-2-96",83,119,86,123,19,27,20,28,2,,"CCGT D1_Integrated Programme Schedule;OEM (Engineering & Deliverables);BALANCE OF PLANT (BOP OPTION);FIRE FIGHTING CONNECTION PIPEWORK SYSTEM;Fire Main incl. Valves, Hydrants, etc.",0,1,0.0,0.0014242116,0.0,27,1.0,0.0000812387,0.0,0.0030769231,0.0,0.0036553525,0.0,0.0605381166,1.0,0.0
1.5.1.9.1-8,SI-SG-2-96,"(BOP) BASIC DESIGN, SPECIFICATION FIRE FIGHTING SYSTEM SG",7112,"CCGTD1_IPS",TT_Task,"61652",-,-,-,100,TK_Complete,01/04/2017,25/03/2017,14/04/2017,07/04/2017,"SI-SG-2-95 FS","SI-SG-2-95","SI-SG-2-97 FS","SI-SG-2-97",87,123,89,125,20,28,20,29,4,,"CCGT D1_Integrated Programme Schedule;OEM (Engineering & Deliverables);BALANCE OF PLANT (BOP OPTION);FIRE FIGHTING CONNECTION PIPEWORK SYSTEM;Fire Main incl. Valves, Hydrants, etc.",1,1,0.0000002484,0.0012207528,0.0002034588,13,1.0,0.0001503957,0.0068493151,0.0030769231,0.000375,0.0031331593,0.0006435006,0.0291479821,1.0,0.0283369572
1.5.1.9.2,61651,"Fire Detection and Alarm System",7112,"CCGTD1_IPS",WBS,"61650",,,,100,Complete,14/01/2017,10/12/2016,06/03/2018,28/02/2018,,,,,76,108,135,171,17,25,31,40,,,"CCGT D1_Integrated Programme Schedule;OEM (Engineering & Deliverables);BALANCE OF PLANT (BOP OPTION);FIRE FIGHTING CONNECTION PIPEWORK SYSTEM"
1.5.1.9.2-1,SI-CYE2-40,"(BOP) ORDER PLACED FIRE ALARM SYSTEM CYE",7112,"CCGTD1_IPS",TT_Mile,"61651",-,-,-,100,TK_Complete,26/08/2017,18/08/2017,26/08/2017,18/08/2017,"SI-CYE2-35 FS","SI-CYE2-35","SI-CYE3-90 FS","SI-CYE3-90",108,144,108,144,25,33,25,33,10,,"CCGT D1_Integrated Programme Schedule;OEM (Engineering & Deliverables);BALANCE OF PLANT (BOP OPTION);FIRE FIGHTING CONNECTION PIPEWORK SYSTEM;Fire Detection and Alarm System",1,1,0.0000004968,0.0006103764,0.0008138352,0,1.0,0.0000812387,0.0068493151,0.0030769231,0.00075,0.0015665796,0.0025740026,0.0,1.0,0.0
1.5.1.9.2-2,SI-CYE2-30,"(BOP) RFQ FIRE ALARM SYSTEM CYE",7112,"CCGTD1_IPS",TT_FinMile,"61651",-,-,-,100,TK_Complete,30/04/2017,31/03/2017,30/04/2017,31/03/2017,"SI-CYE2-25 FS","SI-CYE2-25","SI-CYE2-35 FS","SI-CYE2-35",91,124,91,124,21,28,21,28,4,,"CCGT D1_Integrated Programme Schedule;OEM (Engineering & Deliverables);BALANCE OF PLANT (BOP OPTION);FIRE FIGHTING CONNECTION PIPEWORK SYSTEM;Fire Detection and Alarm System",1,1,0.000000414,0.001017294,0.0004069176,0,1.0,0.0000812387,0.0068493151,0.0030769231,0.000625,0.0026109661,0.0012870013,0.0,1.0,0.0
1.5.1.9.2-3,SI-CYE2-35,"(BOP) QUOTATION STAGE FIRE ALARM SYSTEM CYE",7112,"CCGTD1_IPS",TT_Task,"61651",-,-,-,100,TK_Complete,17/05/2017,01/04/2017,25/06/2017,19/06/2017,"SI-CYE2-30 FS","SI-CYE2-30","SI-CYE2-40 FS","SI-CYE2-40",94,124,99,135,21,28,23,31,5,,"CCGT D1_Integrated Programme Schedule;OEM (Engineering & Deliverables);BALANCE OF PLANT (BOP OPTION);FIRE FIGHTING CONNECTION PIPEWORK SYSTEM;Fire Detection and Alarm System",1,1,0.0000004968,0.0008138352,0.0006103764,39,0.0,0.0001503957,0.0068493151,0.0030769231,0.00075,0.0020887728,0.0019305019,0.0874439462,0.0,0.0283369572
1.5.1.9.2-4,SI-CYE3-92,"(BOP) (RFS) READY FOR SHIPMENT FIRE ALARM SYSTEM CYE",7112,"CCGTD1_IPS",TT_FinMile,"61651",-,-,-,100,TK_Complete,01/03/2018,23/02/2018,01/03/2018,23/02/2018,"SI-CYE3-90 FS","SI-CYE3-90","SI-CYE4-60 FS","SI-CYE4-60",135,171,135,171,31,39,31,39,21,,"CCGT D1_Integrated Programme Schedule;OEM (Engineering & Deliverables);BALANCE OF PLANT (BOP OPTION);FIRE FIGHTING CONNECTION PIPEWORK SYSTEM;Fire Detection and Alarm System",1,1,0.0000002484,0.0002034588,0.0012207528,0,1.0,0.0000812387,0.0068493151,0.0030769231,0.000375,0.0005221932,0.0038610039,0.0,1.0,0.0
1.5.1.9.2-5,SI-CYE3-90,"(BOP) MANUFACTURING, SHOP TEST FIRE ALARM SYSTEM CYE",7112,"CCGTD1_IPS",TT_Task,"61651",-,-,-,100,TK_Complete,26/08/2017,18/08/2017,07/01/2018,17/02/2018,"SI-CYE2-40 FS","SI-CYE2-40","SI-CYE3-92 FS","SI-CYE3-92",108,144,127,170,25,33,29,39,10,,"CCGT D1_Integrated Programme Schedule;OEM (Engineering & Deliverables);BALANCE OF PLANT (BOP OPTION);FIRE FIGHTING CONNECTION PIPEWORK SYSTEM;Fire Detection and Alarm System",1,1,0.000000414,0.0004069176,0.001017294,134,0.0,0.0001503957,0.0068493151,0.0030769231,0.000625,0.0010443864,0.0032175032,0.3004484305,0.0,0.0283369572
1.5.1.9.2-6,SI-CYE4-60,"(BOP) TRANSPORT FIRE ALARM SYSTEM CYE",7112,"CCGTD1_IPS",TT_Task,"61651",-,-,-,100,TK_Complete,02/03/2018,24/02/2018,06/03/2018,28/02/2018,"SI-CYE3-92 FS","SI-CYE3-92","","",135,171,135,171,31,39,31,40,21,,"CCGT D1_Integrated Programme Schedule;OEM (Engineering & Deliverables);BALANCE OF PLANT (BOP OPTION);FIRE FIGHTING CONNECTION PIPEWORK SYSTEM;Fire Detection and Alarm System",1,0,0.0,0.0,0.0014242116,4,1.0,0.0001503957,0.0068493151,0.0,0.0,0.0,0.0045045045,0.0089686099,1.0,0.0283369572
1.5.1.9.2-7,SI-CYE2-20,"(BOP) TECHNICAL CLARIFICATION FIRE ALARM SYSTEM CYE",7112,"CCGTD1_IPS",TT_Task,"61651",-,-,-,100,TK_Complete,14/01/2017,10/12/2016,10/02/2017,06/01/2017,"","","SI-CYE2-25 FS","SI-CYE2-25",76,108,80,112,17,25,18,26,1,,"CCGT D1_Integrated Programme Schedule;OEM (Engineering & Deliverables);BALANCE OF PLANT (BOP OPTION);FIRE FIGHTING CONNECTION PIPEWORK SYSTEM;Fire Detection and Alarm System",0,1,0.0,0.0014242116,0.0,27,1.0,0.0000812387,0.0,0.0030769231,0.0,0.0036553525,0.0,0.0605381166,1.0,0.0
1.5.1.9.2-8,SI-CYE2-25,"(BOP) BASIC DESIGN, SPECIFICATION FIRE ALARM SYSTEM CYE",7112,"CCGTD1_IPS",TT_Task,"61651",-,-,-,100,TK_Complete,14/01/2017,07/01/2017,10/02/2017,22/03/2017,"SI-CYE2-20 FS","SI-CYE2-20","SI-CYE2-30 FS","SI-CYE2-30",76,112,80,122,17,26,18,28,1,,"CCGT D1_Integrated Programme Schedule;OEM (Engineering & Deliverables);BALANCE OF PLANT (BOP OPTION);FIRE FIGHTING CONNECTION PIPEWORK SYSTEM;Fire Detection and Alarm System",1,1,0.0000002484,0.0012207528,0.0002034588,27,0.0,0.0001503957,0.0068493151,0.0030769231,0.000375,0.0031331593,0.0006435006,0.0605381166,0.0,0.0283369572
1.5.2,61646,"SWITCHYARD",7112,"CCGTD1_IPS",WBS,"58234",,,,100,Complete,14/04/2017,30/03/2017,05/06/2018,10/07/2018,,,,,89,123,148,190,20,28,34,44,,,"CCGT D1_Integrated Programme Schedule;OEM (Engineering & Deliverables)"
1.5.2.1,61647,"SWITCHYARD STRUCTURE",7112,"CCGTD1_IPS",WBS,"61646",,,,100,Complete,14/04/2017,30/03/2017,05/06/2018,10/07/2018,,,,,89,123,148,190,20,28,34,44,,,"CCGT D1_Integrated Programme Schedule;OEM (Engineering & Deliverables);SWITCHYARD"
1.5.2.1.1,61648,"HV Switchgear GIL (ACA)",7112,"CCGTD1_IPS",WBS,"61647",,,,100,Complete,14/04/2017,30/03/2017,05/06/2018,10/07/2018,,,,,89,123,148,190,20,28,34,44,,,"CCGT D1_Integrated Programme Schedule;OEM (Engineering & Deliverables);SWITCHYARD;SWITCHYARD STRUCTURE"
1.5.2.1.1-1,SI0ACA3-87,"PACKING HV-SWITCHGEAR GIL",7112,"CCGTD1_IPS",TT_Task,"61648",-,-,-,100,TK_Complete,07/04/2018,10/03/2018,06/05/2018,30/03/2018,"SI0ACA3-25 FS","SI0ACA3-25","SI0ACA3-85 FS","SI0ACA3-85",140,173,144,176,32,40,33,41,24,,"CCGT D1_Integrated Programme Schedule;OEM (Engineering & Deliverables);SWITCHYARD;SWITCHYARD STRUCTURE;HV Switchgear GIL (ACA)",1,1,0.0000001242,0.0006103764,0.0002034588,29,1.0,0.0001503957,0.0068493151,0.0030769231,0.0001875,0.0015665796,0.0006435006,0.0650224215,1.0,0.0283369572
1.5.2.1.1-2,SI0ACA4-57,"TRANSPORT HV-SWITCHGEAR GIL",7112,"CCGTD1_IPS",TT_Task,"61648",-,-,-,100,TK_Complete,07/05/2018,01/06/2018,04/06/2018,10/07/2018,"SI0ACA3-85 FS","SI0ACA3-85","SI0ACA4-59 FS","SI0ACA4-59",144,185,148,190,33,43,34,44,27,,"CCGT D1_Integrated Programme Schedule;OEM (Engineering & Deliverables);SWITCHYARD;SWITCHYARD STRUCTURE;HV Switchgear GIL (ACA)",1,1,0.0000001242,0.0002034588,0.0006103764,28,0.0,0.0001503957,0.0068493151,0.0030769231,0.0001875,0.0005221932,0.0019305019,0.0627802691,0.0,0.0283369572
1.5.2.1.1-3,SI0ACA4-59,"(OTD-OS) ON SITE HV-SWITCHGEAR GIL",7112,"CCGTD1_IPS",TT_FinMile,"61648",-,-,-,100,TK_Complete,05/06/2018,10/07/2018,05/06/2018,10/07/2018,"SI0ACA4-57 FS","SI0ACA4-57","","",148,190,148,190,34,44,34,44,30,,"CCGT D1_Integrated Programme Schedule;OEM (Engineering & Deliverables);SWITCHYARD;SWITCHYARD STRUCTURE;HV Switchgear GIL (ACA)",1,0,0.0,0.0,0.0008138352,0,1.0,0.0000812387,0.0068493151,0.0,0.0,0.0,0.0025740026,0.0,1.0,0.0
1.5.2.1.1-4,SI0ACA3-85,"(RFS) READY FOR SHIPMENT HV-SWITCHGEAR GIL",7112,"CCGTD1_IPS",TT_FinMile,"61648",-,-,-,100,TK_Complete,06/05/2018,30/03/2018,06/05/2018,30/03/2018,"SI0ACA3-87 FS","SI0ACA3-87","SI0ACA4-57 FS","SI0ACA4-57",144,176,144,176,33,41,33,41,27,,"CCGT D1_Integrated Programme Schedule;OEM (Engineering & Deliverables);SWITCHYARD;SWITCHYARD STRUCTURE;HV Switchgear GIL (ACA)",1,1,0.0000001656,0.0004069176,0.0004069176,0,1.0,0.0000812387,0.0068493151,0.0030769231,0.00025,0.0010443864,0.0012870013,0.0,1.0,0.0
1.5.2.1.1-5,SI0ACA3-25,"MANUFACTURING, SHOP TEST HV-SWITCHGEAR GIL",7112,"CCGTD1_IPS",TT_Task,"61648",-,-,-,100,TK_Complete,14/04/2017,30/03/2017,30/03/2018,09/03/2018,"","","SI0ACA3-87 FS","SI0ACA3-87",89,123,139,173,20,28,32,40,4,,"CCGT D1_Integrated Programme Schedule;OEM (Engineering & Deliverables);SWITCHYARD;SWITCHYARD STRUCTURE;HV Switchgear GIL (ACA)",0,1,0.0,0.0008138352,0.0,350,1.0,0.0000812387,0.0,0.0030769231,0.0,0.0020887728,0.0,0.7847533632,1.0,0.0
1.5.3,61643,"CONTROL ROOM BUILDING",7112,"CCGTD1_IPS",WBS,"58234",,,,100,Complete,01/03/2017,21/02/2017,11/04/2017,03/04/2017,,,,,83,118,88,124,19,27,20,29,,,"CCGT D1_Integrated Programme Schedule;OEM (Engineering & Deliverables)"
1.5.3.1,61644,"CONTROL ROOM / ADMIN BUILDING  UCA/UYC",7112,"CCGTD1_IPS",WBS,"61643",,,,100,Complete,01/03/2017,21/02/2017,11/04/2017,03/04/2017,,,,,83,118,88,124,19,27,20,29,,,"CCGT D1_Integrated Programme Schedule;OEM (Engineering & Deliverables);CONTROL ROOM BUILDING"
1.5.3.1.1,61645,"Cable Support System BZP",7112,"CCGTD1_IPS",WBS,"61644",,,,100,Complete,01/03/2017,21/02/2017,11/04/2017,03/04/2017,,,,,83,118,88,124,19,27,20,29,,,"CCGT D1_Integrated Programme Schedule;OEM (Engineering & Deliverables);CONTROL ROOM BUILDING;CONTROL ROOM / ADMIN BUILDING  UCA/UYC"
1.5.3.1.1-1,SI0BZP2B30,"DETAIL DESIGN CABLE SUPPORT SYSTEM UCA",7112,"CCGTD1_IPS",TT_Task,"61645",-,-,-,100,TK_Complete,01/03/2017,21/02/2017,11/04/2017,03/04/2017,"","","","",83,118,88,124,19,27,20,29,2,,"CCGT D1_Integrated Programme Schedule;OEM (Engineering & Deliverables);CONTROL ROOM BUILDING;CONTROL ROOM / ADMIN BUILDING  UCA/UYC;Cable Support System BZP",0,0,0.0,0.0,0.0,41,1.0,0.0000812387,0.0,0.0,0.0,0.0,0.0,0.0919282511,1.0,0.0
1.5.4,61639,"FUEL OIL SUPPLY AREA",7112,"CCGTD1_IPS",WBS,"58234",,,,100,Complete,25/06/2017,01/06/2017,02/10/2017,15/11/2017,,,,,99,132,113,156,23,31,26,36,,,"CCGT D1_Integrated Programme Schedule;OEM (Engineering & Deliverables)"
1.5.4.1,61640,"SLEEPERS FOR PIPING AND CABLES  UGY",7112,"CCGTD1_IPS",WBS,"61639",,,,100,Complete,25/06/2017,01/06/2017,02/10/2017,15/11/2017,,,,,99,132,113,156,23,31,26,36,,,"CCGT D1_Integrated Programme Schedule;OEM (Engineering & Deliverables);FUEL OIL SUPPLY AREA"
1.5.4.1.1,61642,"Steelworks UGY",7112,"CCGTD1_IPS",WBS,"61640",,,,100,Complete,25/06/2017,01/06/2017,02/10/2017,15/11/2017,,,,,99,132,113,156,23,31,26,36,,,"CCGT D1_Integrated Programme Schedule;OEM (Engineering & Deliverables);FUEL OIL SUPPLY AREA;SLEEPERS FOR PIPING AND CABLES  UGY"
1.5.4.1.1-1,SI0UGY2B60,"(MS3) STEEL STRUCTURE, FINAL DIMENSIONS AND LOADS AVAILABLE UGY",7112,"CCGTD1_IPS",TT_FinMile,"61642",-,-,-,100,TK_Complete,25/06/2017,01/06/2017,25/06/2017,01/06/2017,"","","SI0UGY2B70 FS","SI0UGY2B70",99,132,99,132,23,31,23,31,7,,"CCGT D1_Integrated Programme Schedule;OEM (Engineering & Deliverables);FUEL OIL SUPPLY AREA;SLEEPERS FOR PIPING AND CABLES  UGY;Steelworks UGY",0,1,0.0,0.0002034588,0.0,0,1.0,0.0000812387,0.0,0.0030769231,0.0,0.0005221932,0.0,0.0,1.0,0.0
1.5.4.1.1-2,SI0UGY2B70,"DETAIL DESIGN / CHECKER STEEL STRUCTURE UGY",7112,"CCGTD1_IPS",TT_Task,"61642",-,-,-,100,TK_Complete,08/08/2017,10/07/2017,02/10/2017,15/11/2017,"SI0UGY2B60 FS","SI0UGY2B60","","",105,138,113,156,24,32,26,36,10,,"CCGT D1_Integrated Programme Schedule;OEM (Engineering & Deliverables);FUEL OIL SUPPLY AREA;SLEEPERS FOR PIPING AND CABLES  UGY;Steelworks UGY",1,0,0.0,0.0,0.0002034588,55,0.0,0.0001503957,0.0068493151,0.0,0.0,0.0,0.0006435006,0.1233183857,0.0,0.0283369572
1.5.4.1.2,61641,"Concrete / Formwork / Reinforcement UGY",7112,"CCGTD1_IPS",WBS,"61640",,,,100,Complete,26/08/2017,25/08/2017,29/09/2017,24/09/2017,,,,,108,145,113,149,25,33,26,34,,,"CCGT D1_Integrated Programme Schedule;OEM (Engineering & Deliverables);FUEL OIL SUPPLY AREA;SLEEPERS FOR PIPING AND CABLES  UGY"
1.5.4.1.2-1,SI0UGY2-45,"PREPARATION BASIC BUILDING DWGS  UGY",7112,"CCGTD1_IPS",TT_Task,"61641",-,-,-,100,TK_Complete,26/08/2017,25/08/2017,29/09/2017,24/09/2017,"SI-3412-20 FS,SI0UGY2-60 FF","SI-3412-20,SI0UGY2-60","","",108,145,113,149,25,33,26,34,10,,"CCGT D1_Integrated Programme Schedule;OEM (Engineering & Deliverables);FUEL OIL SUPPLY AREA;SLEEPERS FOR PIPING AND CABLES  UGY;Concrete / Formwork / Reinforcement UGY",2,0,0.0,0.0,0.0006103764,34,1.0,0.0001538896,0.0136986301,0.0,0.0,0.0,0.0019305019,0.0762331839,1.0,0.029768542
1.5.4.1.2-2,SI0UGY2-60,"(MS3) CONCRETE STRUCTURE FINAL DIMENSIONS LOADS AVAILABLE UGY",7112,"CCGTD1_IPS",TT_FinMile,"61641",-,-,-,100,TK_Complete,25/09/2017,27/08/2017,25/09/2017,27/08/2017,"","","SI0UGY2-45 FF","SI0UGY2-45",112,145,112,145,26,33,26,33,11,,"CCGT D1_Integrated Programme Schedule;OEM (Engineering & Deliverables);FUEL OIL SUPPLY AREA;SLEEPERS FOR PIPING AND CABLES  UGY;Concrete / Formwork / Reinforcement UGY",0,1,0.0,0.0002034588,0.0,0,1.0,0.0000812387,0.0,0.0030769231,0.0,0.0005221932,0.0,0.0,1.0,0.0
1.5.5,61636,"FUEL GAS SUPPLY AREA",7112,"CCGTD1_IPS",WBS,"58234",,,,100,Complete,26/06/2017,17/06/2017,30/07/2017,30/06/2017,,,,,99,135,104,137,23,31,24,31,,,"CCGT D1_Integrated Programme Schedule;OEM (Engineering & Deliverables)"
1.5.5.1,61637,"STRUCTURE FOR GAS REDUCING STATION  (00UEN)",7112,"CCGTD1_IPS",WBS,"61636",,,,100,Complete,26/06/2017,17/06/2017,30/07/2017,30/06/2017,,,,,99,135,104,137,23,31,24,31,,,"CCGT D1_Integrated Programme Schedule;OEM (Engineering & Deliverables);FUEL GAS SUPPLY AREA"
1.5.5.1.1,61638,"Concrete / Formwork / Reinforcement 00UEN",7112,"CCGTD1_IPS",WBS,"61637",,,,100,Complete,26/06/2017,17/06/2017,30/07/2017,30/06/2017,,,,,99,135,104,137,23,31,24,31,,,"CCGT D1_Integrated Programme Schedule;OEM (Engineering & Deliverables);FUEL GAS SUPPLY AREA;STRUCTURE FOR GAS REDUCING STATION  (00UEN)"
1.5.5.1.1-1,SI0UEN2-60,"(MS3) CONCRETE STRUCTURE FINAL DIMENSIONS LOADS AVAILABLE 00UEN",7112,"CCGTD1_IPS",TT_FinMile,"61638",-,-,-,100,TK_Complete,25/07/2017,25/06/2017,25/07/2017,25/06/2017,"SI-EK-2-60 FS","SI-EK-2-60","SI0UEN2-45 FF","SI0UEN2-45",103,136,103,136,24,31,24,31,9,,"CCGT D1_Integrated Programme Schedule;OEM (Engineering & Deliverables);FUEL GAS SUPPLY AREA;STRUCTURE FOR GAS REDUCING STATION  (00UEN);Concrete / Formwork / Reinforcement 00UEN",1,1,0.0000001656,0.0002034588,0.0008138352,0,1.0,0.0000812387,0.0068493151,0.0030769231,0.00025,0.0005221932,0.0025740026,0.0,1.0,0.0
1.5.5.1.1-2,SI0UEN2-45,"PREPARATION BASIC BUILDING DWGS  00UEN",7112,"CCGTD1_IPS",TT_Task,"61638",-,-,-,100,TK_Complete,26/06/2017,17/06/2017,30/07/2017,30/06/2017,"SI-3412-20 FS,SI0UEN2-60 FF","SI-3412-20,SI0UEN2-60","","",99,135,104,137,23,31,24,31,8,,"CCGT D1_Integrated Programme Schedule;OEM (Engineering & Deliverables);FUEL GAS SUPPLY AREA;STRUCTURE FOR GAS REDUCING STATION  (00UEN);Concrete / Formwork / Reinforcement 00UEN",2,0,0.0,0.0,0.0014242116,34,1.0,0.0001538896,0.0136986301,0.0,0.0,0.0,0.0045045045,0.0762331839,1.0,0.029768542
1.5.6,61630,"WATER TREATMENT / WASTE WATER TREATMENT",7112,"CCGTD1_IPS",WBS,"58234",,,,100,Complete,03/07/2017,02/06/2017,19/08/2018,08/10/2018,,,,,100,133,159,203,23,31,37,47,,,"CCGT D1_Integrated Programme Schedule;OEM (Engineering & Deliverables)"
1.5.6.1,61633,"STRUCTURE FOR LABORATORY  USV",7112,"CCGTD1_IPS",WBS,"61630",,,,100,Complete,03/07/2017,02/06/2017,19/08/2018,08/10/2018,,,,,100,133,159,203,23,31,37,47,,,"CCGT D1_Integrated Programme Schedule;OEM (Engineering & Deliverables);WATER TREATMENT / WASTE WATER TREATMENT"
1.5.6.1.1,61635,"Laboratory Equipment STG",7112,"CCGTD1_IPS",WBS,"61633",,,,100,Complete,26/10/2017,25/09/2017,19/08/2018,08/10/2018,,,,,117,149,159,203,27,34,37,47,,,"CCGT D1_Integrated Programme Schedule;OEM (Engineering & Deliverables);WATER TREATMENT / WASTE WATER TREATMENT;STRUCTURE FOR LABORATORY  USV"
1.5.6.1.1-1,SI1STG-3-82,"DESIGN, MANUFACTURING, SHOP TEST LABORATORY CONTAINER STG",7112,"CCGTD1_IPS",TT_Task,"61635",-,-,-,100,TK_Complete,26/10/2017,25/09/2017,08/04/2018,07/06/2018,"","","SI1STG-3-84 FS","SI1STG-3-84",117,149,140,185,27,34,32,43,13,,"CCGT D1_Integrated Programme Schedule;OEM (Engineering & Deliverables);WATER TREATMENT / WASTE WATER TREATMENT;STRUCTURE FOR LABORATORY  USV;Laboratory Equipment STG",0,1,0.0,0.0006103764,0.0,164,0.0,0.0000812387,0.0,0.0030769231,0.0,0.0015665796,0.0,0.3677130045,0.0,0.0
1.5.6.1.1-2,SI1STG-4-42,"TRANSPORT LABORATORY CONTAINER STG",7112,"CCGTD1_IPS",TT_Task,"61635",-,-,-,100,TK_Complete,02/07/2018,26/08/2018,19/08/2018,08/10/2018,"SI1STG-3-84 FS","SI1STG-3-84","SI1STG-4-46 FS","SI1STG-4-46",152,197,159,203,35,46,37,47,32,,"CCGT D1_Integrated Programme Schedule;OEM (Engineering & Deliverables);WATER TREATMENT / WASTE WATER TREATMENT;STRUCTURE FOR LABORATORY  USV;Laboratory Equipment STG",1,1,0.0000000828,0.0002034588,0.0004069176,48,1.0,0.0001503957,0.0068493151,0.0030769231,0.000125,0.0005221932,0.0012870013,0.1076233184,1.0,0.0283369572
1.5.6.1.1-3,SI1STG-4-46,"(OTD-OS) ON SITE LABORATORY CONTAINER STG",7112,"CCGTD1_IPS",TT_FinMile,"61635",-,-,-,100,TK_Complete,19/08/2018,08/10/2018,19/08/2018,08/10/2018,"SI1STG-4-42 FS","SI1STG-4-42","","",159,203,159,203,37,47,37,47,35,,"CCGT D1_Integrated Programme Schedule;OEM (Engineering & Deliverables);WATER TREATMENT / WASTE WATER TREATMENT;STRUCTURE FOR LABORATORY  USV;Laboratory Equipment STG",1,0,0.0,0.0,0.0006103764,0,1.0,0.0000812387,0.0068493151,0.0,0.0,0.0,0.0019305019,0.0,1.0,0.0
1.5.6.1.1-4,SI1STG-3-84,"(RFS) READY FOR SHIPMENT LABORATORY CONTAINER STG",7112,"CCGTD1_IPS",TT_FinMile,"61635",-,-,-,100,TK_Complete,01/07/2018,25/08/2018,01/07/2018,25/08/2018,"SI1STG-3-82 FS","SI1STG-3-82","SI1STG-4-42 FS","SI1STG-4-42",152,197,152,197,35,46,35,46,32,,"CCGT D1_Integrated Programme Schedule;OEM (Engineering & Deliverables);WATER TREATMENT / WASTE WATER TREATMENT;STRUCTURE FOR LABORATORY  USV;Laboratory Equipment STG",1,1,0.0000000828,0.0004069176,0.0002034588,0,1.0,0.0000812387,0.0068493151,0.0030769231,0.000125,0.0010443864,0.0006435006,0.0,1.0,0.0
1.5.6.1.2,61634,"Concrete / Formwork / Reinforcement USV",7112,"CCGTD1_IPS",WBS,"61633",,,,100,Complete,03/07/2017,02/06/2017,03/07/2017,02/06/2017,,,,,100,133,100,133,23,31,23,31,,,"CCGT D1_Integrated Programme Schedule;OEM (Engineering & Deliverables);WATER TREATMENT / WASTE WATER TREATMENT;STRUCTURE FOR LABORATORY  USV"
1.5.6.1.2-1,SI1USV2-79,"(MS3) CONCRETE STRUCTURE FINAL DIMENSIONS LOADS AVAILABLE USV",7112,"CCGTD1_IPS",TT_Mile,"61634",-,-,-,100,TK_Complete,03/07/2017,02/06/2017,03/07/2017,02/06/2017,"","","","",100,133,100,133,23,31,23,31,9,,"CCGT D1_Integrated Programme Schedule;OEM (Engineering & Deliverables);WATER TREATMENT / WASTE WATER TREATMENT;STRUCTURE FOR LABORATORY  USV;Concrete / Formwork / Reinforcement USV",0,0,0.0,0.0,0.0,0,1.0,0.0000812387,0.0,0.0,0.0,0.0,0.0,0.0,1.0,0.0
1.5.6.2,61631,"WATER TREATMENT PLANT BUILDING",7112,"CCGTD1_IPS",WBS,"61630",,,,100,Complete,08/08/2017,12/07/2017,24/07/2018,16/07/2018,,,,,105,138,155,191,24,32,36,44,,,"CCGT D1_Integrated Programme Schedule;OEM (Engineering & Deliverables);WATER TREATMENT / WASTE WATER TREATMENT"
1.5.6.2.1,61632,"Process Drains Treatment GN-",7112,"CCGTD1_IPS",WBS,"61631",,,,100,Complete,08/08/2017,12/07/2017,24/07/2018,16/07/2018,,,,,105,138,155,191,24,32,36,44,,,"CCGT D1_Integrated Programme Schedule;OEM (Engineering & Deliverables);WATER TREATMENT / WASTE WATER TREATMENT;WATER TREATMENT PLANT BUILDING"
1.5.6.2.1-1,SI0GN-3B82,"DETAIL DESIGN, MANUFACTURING, SHOP TEST PROCESS DRAINS TREATMENT GN-",7112,"CCGTD1_IPS",TT_Task,"61632",-,-,-,100,TK_Complete,08/08/2017,12/07/2017,29/03/2018,18/04/2018,"","","SI0GN-3B84 FS","SI0GN-3B84",105,138,139,178,24,32,32,41,10,,"CCGT D1_Integrated Programme Schedule;OEM (Engineering & Deliverables);WATER TREATMENT / WASTE WATER TREATMENT;WATER TREATMENT PLANT BUILDING;Process Drains Treatment GN-",0,1,0.0,0.0006103764,0.0,233,0.0,0.0000812387,0.0,0.0030769231,0.0,0.0015665796,0.0,0.5224215247,0.0,0.0
1.5.6.2.1-2,SI0GN-4B42,"TRANSPORT PROCESS DRAINS TREATMENT GN-",7112,"CCGTD1_IPS",TT_Task,"61632",-,-,-,100,TK_Complete,26/05/2018,10/06/2018,24/07/2018,16/07/2018,"SI0GN-3B84 SS","SI0GN-3B84","SI0GN-4B46 FS","SI0GN-4B46",147,186,155,191,34,43,36,44,29,,"CCGT D1_Integrated Programme Schedule;OEM (Engineering & Deliverables);WATER TREATMENT / WASTE WATER TREATMENT;WATER TREATMENT PLANT BUILDING;Process Drains Treatment GN-",1,1,0.0000000828,0.0002034588,0.0004069176,59,1.0,0.0001503957,0.0068493151,0.0030769231,0.000125,0.0005221932,0.0012870013,0.1322869955,1.0,0.0283369572
1.5.6.2.1-3,SI0GN-3B84,"(RFS) READY FOR SHIPMENT PROCESS DRAINS TREATMENT GN-",7112,"CCGTD1_IPS",TT_FinMile,"61632",-,-,-,100,TK_Complete,25/05/2018,30/05/2018,25/05/2018,30/05/2018,"SI0GN-3B82 FS","SI0GN-3B82","SI0GN-4B42 SS","SI0GN-4B42",147,184,147,184,34,43,34,43,28,,"CCGT D1_Integrated Programme Schedule;OEM (Engineering & Deliverables);WATER TREATMENT / WASTE WATER TREATMENT;WATER TREATMENT PLANT BUILDING;Process Drains Treatment GN-",1,1,0.0000000828,0.0004069176,0.0002034588,0,1.0,0.0000812387,0.0068493151,0.0030769231,0.000125,0.0010443864,0.0006435006,0.0,1.0,0.0
1.5.6.2.1-4,SI0GN-4B46,"(OTD-OS) ON SITE PROCESS DRAINS TREATMENT GN-",7112,"CCGTD1_IPS",TT_FinMile,"61632",-,-,-,100,TK_Complete,24/07/2018,16/07/2018,24/07/2018,16/07/2018,"SI0GN-4B42 FS","SI0GN-4B42","","",155,191,155,191,36,44,36,44,32,,"CCGT D1_Integrated Programme Schedule;OEM (Engineering & Deliverables);WATER TREATMENT / WASTE WATER TREATMENT;WATER TREATMENT PLANT BUILDING;Process Drains Treatment GN-",1,0,0.0,0.0,0.0006103764,0,1.0,0.0000812387,0.0068493151,0.0,0.0,0.0,0.0019305019,0.0,1.0,0.0
1.5.7,61618,"CIRCULATING WATER AREA",7112,"CCGTD1_IPS",WBS,"58234",,,,100,Complete,14/01/2017,19/12/2016,18/08/2018,30/11/2018,,,,,76,109,159,211,17,25,37,49,,,"CCGT D1_Integrated Programme Schedule;OEM (Engineering & Deliverables)"
1.5.7.1,61628,"CIRCULATING WATER INTAKE CULVERT",7112,"CCGTD1_IPS",WBS,"61618",,,,100,Complete,26/11/2017,26/10/2017,15/05/2018,28/05/2018,,,,,121,153,145,184,28,35,34,43,,,"CCGT D1_Integrated Programme Schedule;OEM (Engineering & Deliverables);CIRCULATING WATER AREA"
1.5.7.1.1,61629,"Cooling Water Screening Plant PAA",7112,"CCGTD1_IPS",WBS,"61628",,,,100,Complete,26/11/2017,26/10/2017,15/05/2018,28/05/2018,,,,,121,153,145,184,28,35,34,43,,,"CCGT D1_Integrated Programme Schedule;OEM (Engineering & Deliverables);CIRCULATING WATER AREA;CIRCULATING WATER INTAKE CULVERT"
1.5.7.1.1-1,SI1PAA3-25,"DETAIL DESIGN, MANUFACTURING CW BAR SCREEN FOR PAB SYSTEM",7112,"CCGTD1_IPS",TT_Task,"61629",-,-,-,100,TK_Complete,26/11/2017,26/10/2017,23/04/2018,23/03/2018,"","","SI1PAA3-80 FS","SI1PAA3-80",121,153,142,175,28,35,33,40,15,,"CCGT D1_Integrated Programme Schedule;OEM (Engineering & Deliverables);CIRCULATING WATER AREA;CIRCULATING WATER INTAKE CULVERT;Cooling Water Screening Plant PAA",0,1,0.0,0.0006103764,0.0,148,1.0,0.0000812387,0.0,0.0030769231,0.0,0.0015665796,0.0,0.331838565,1.0,0.0
1.5.7.1.1-2,SI1PAA4-52,"TRANSPORT CW BAR SCREEN FOR PAB SYSTEM",7112,"CCGTD1_IPS",TT_Task,"61629",-,-,-,100,TK_Complete,02/05/2018,23/05/2018,15/05/2018,28/05/2018,"SI1PAA3-80 FS","SI1PAA3-80","SI1PAA4-54 FS","SI1PAA4-54",144,183,145,184,33,42,34,43,26,,"CCGT D1_Integrated Programme Schedule;OEM (Engineering & Deliverables);CIRCULATING WATER AREA;CIRCULATING WATER INTAKE CULVERT;Cooling Water Screening Plant PAA",1,1,0.0000000828,0.0002034588,0.0004069176,13,1.0,0.0001503957,0.0068493151,0.0030769231,0.000125,0.0005221932,0.0012870013,0.0291479821,1.0,0.0283369572
1.5.7.1.1-3,SI1PAA4-54,"(OTD-OS) ON SITE CW BAR SCREEN FOR PAB SYSTEM",7112,"CCGTD1_IPS",TT_FinMile,"61629",-,-,-,100,TK_Complete,15/05/2018,28/05/2018,15/05/2018,28/05/2018,"SI1PAA4-52 FS","SI1PAA4-52","","",145,184,145,184,34,43,34,43,28,,"CCGT D1_Integrated Programme Schedule;OEM (Engineering & Deliverables);CIRCULATING WATER AREA;CIRCULATING WATER INTAKE CULVERT;Cooling Water Screening Plant PAA",1,0,0.0,0.0,0.0006103764,0,1.0,0.0000812387,0.0068493151,0.0,0.0,0.0,0.0019305019,0.0,1.0,0.0
1.5.7.1.1-4,SI1PAA3-80,"(RFS) READY FOR SHIPMENT CW BAR SCREEN FOR PAB SYSTEM",7112,"CCGTD1_IPS",TT_FinMile,"61629",-,-,-,100,TK_Complete,26/03/2018,23/03/2018,26/03/2018,23/03/2018,"SI1PAA3-25 FS","SI1PAA3-25","SI1PAA4-52 FS","SI1PAA4-52",138,175,138,175,32,40,32,40,23,,"CCGT D1_Integrated Programme Schedule;OEM (Engineering & Deliverables);CIRCULATING WATER AREA;CIRCULATING WATER INTAKE CULVERT;Cooling Water Screening Plant PAA",1,1,0.0000000828,0.0004069176,0.0002034588,0,1.0,0.0000812387,0.0068493151,0.0030769231,0.000125,0.0010443864,0.0006435006,0.0,1.0,0.0
1.5.7.2,61623,"CIRCULATING WATER PUMP BUILDING",7112,"CCGTD1_IPS",WBS,"61618",,,,100,Complete,14/01/2017,19/12/2016,18/08/2018,07/07/2018,,,,,76,109,159,190,17,25,37,44,,,"CCGT D1_Integrated Programme Schedule;OEM (Engineering & Deliverables);CIRCULATING WATER AREA"
1.5.7.2.1,61627,"Crane in UQA SMQ",7112,"CCGTD1_IPS",WBS,"61623",,,,100,Complete,25/07/2017,19/07/2017,25/05/2018,23/04/2018,,,,,103,139,147,179,24,32,34,41,,,"CCGT D1_Integrated Programme Schedule;OEM (Engineering & Deliverables);CIRCULATING WATER AREA;CIRCULATING WATER PUMP BUILDING"
1.5.7.2.1-1,SI1SMQ3A85,"FABRICATION DESIGN, MANUFACTURING, SHOP TEST CRANE SMQ FOR UQA",7112,"CCGTD1_IPS",TT_Task,"61627",-,-,-,100,TK_Complete,25/07/2017,19/07/2017,22/01/2018,28/02/2018,"","","SI1SMQ3A90 FS","SI1SMQ3A90",103,139,129,171,24,32,30,40,9,,"CCGT D1_Integrated Programme Schedule;OEM (Engineering & Deliverables);CIRCULATING WATER AREA;CIRCULATING WATER PUMP BUILDING;Crane in UQA SMQ",0,1,0.0,0.0006103764,0.0,181,0.0,0.0000812387,0.0,0.0030769231,0.0,0.0015665796,0.0,0.4058295964,0.0,0.0
1.5.7.2.1-2,SI1SMQ4A47,"TRANSPORT CRANE SMQ FOR UQA",7112,"CCGTD1_IPS",TT_Task,"61627",-,-,-,100,TK_Complete,17/04/2018,22/03/2018,10/05/2018,23/04/2018,"SI1SMQ3A90 FS","SI1SMQ3A90","SI1SMQ4A50 FS","SI1SMQ4A50",141,174,145,179,33,40,33,41,24,,"CCGT D1_Integrated Programme Schedule;OEM (Engineering & Deliverables);CIRCULATING WATER AREA;CIRCULATING WATER PUMP BUILDING;Crane in UQA SMQ",1,1,0.0000000828,0.0002034588,0.0004069176,23,0.2,0.0001503957,0.0068493151,0.0030769231,0.000125,0.0005221932,0.0012870013,0.0515695067,0.2,0.0283369572
1.5.7.2.1-3,SI1SMQ4A50,"(OTD-OS) ON SITE CRANE SMQ FOR UQA",7112,"CCGTD1_IPS",TT_FinMile,"61627",-,-,-,100,TK_Complete,25/05/2018,23/04/2018,25/05/2018,23/04/2018,"SI1SMQ4A47 FS","SI1SMQ4A47","","",147,179,147,179,34,41,34,41,28,,"CCGT D1_Integrated Programme Schedule;OEM (Engineering & Deliverables);CIRCULATING WATER AREA;CIRCULATING WATER PUMP BUILDING;Crane in UQA SMQ",1,0,0.0,0.0,0.0006103764,0,1.0,0.0000812387,0.0068493151,0.0,0.0,0.0,0.0019305019,0.0,1.0,0.0
1.5.7.2.1-4,SI1SMQ3A90,"(RFS) READY FOR SHIPMENT CRANE SMQ FOR UQA",7112,"CCGTD1_IPS",TT_FinMile,"61627",-,-,-,100,TK_Complete,28/03/2018,28/02/2018,28/03/2018,28/02/2018,"SI1SMQ3A85 FS","SI1SMQ3A85","SI1SMQ4A47 FS","SI1SMQ4A47",139,171,139,171,32,40,32,40,23,,"CCGT D1_Integrated Programme Schedule;OEM (Engineering & Deliverables);CIRCULATING WATER AREA;CIRCULATING WATER PUMP BUILDING;Crane in UQA SMQ",1,1,0.0000000828,0.0004069176,0.0002034588,0,1.0,0.0000812387,0.0068493151,0.0030769231,0.000125,0.0010443864,0.0006435006,0.0,1.0,0.0
1.5.7.2.2,61626,"Circulating Water Pumps PAC",7112,"CCGTD1_IPS",WBS,"61623",,,,100,Complete,06/05/2017,16/04/2017,18/08/2018,07/07/2018,,,,,92,126,159,190,21,29,37,44,,,"CCGT D1_Integrated Programme Schedule;OEM (Engineering & Deliverables);CIRCULATING WATER AREA;CIRCULATING WATER PUMP BUILDING"
1.5.7.2.2-1,SI1PAC3B80,"(RFS) READY FOR SHIPMENT CIRC. CW PUMP PAC",7112,"CCGTD1_IPS",TT_FinMile,"61626",-,-,-,100,TK_Complete,30/06/2018,30/05/2018,30/06/2018,30/05/2018,"SI1PAC3B25 FS","SI1PAC3B25","SI1PAC4B25 FS","SI1PAC4B25",152,184,152,184,35,43,35,43,31,,"CCGT D1_Integrated Programme Schedule;OEM (Engineering & Deliverables);CIRCULATING WATER AREA;CIRCULATING WATER PUMP BUILDING;Circulating Water Pumps PAC",1,1,0.0000000828,0.0006103764,0.0002034588,0,1.0,0.0000812387,0.0068493151,0.0030769231,0.000125,0.0015665796,0.0006435006,0.0,1.0,0.0
1.5.7.2.2-2,SI1PAC4E42,"(OTD-OS) ON SITE EMBEDDED PARTS PUMP PAC",7112,"CCGTD1_IPS",TT_FinMile,"61626",-,-,-,100,TK_Complete,18/08/2018,07/07/2018,18/08/2018,07/07/2018,"SI1PAC4B42 SS,SI1PAC3B25 SS","SI1PAC4B42,SI1PAC3B25","","",159,190,159,190,37,44,37,44,34,,"CCGT D1_Integrated Programme Schedule;OEM (Engineering & Deliverables);CIRCULATING WATER AREA;CIRCULATING WATER PUMP BUILDING;Circulating Water Pumps PAC",2,0,0.0,0.0,0.0008138352,0,1.0,0.0000812387,0.0136986301,0.0,0.0,0.0,0.0025740026,0.0,1.0,0.0
1.5.7.2.2-3,SI1PAC3B25,"DETAIL DESIGN, MANUFACTURING, SHOP TEST CIRC. CW PUMP PAC",7112,"CCGTD1_IPS",TT_Task,"61626",-,-,-,100,TK_Complete,06/05/2017,16/04/2017,23/06/2018,22/04/2018,"","","SI1PAC4E42 SS,SI1PAC3B80 FS","SI1PAC4E42,SI1PAC3B80",92,126,151,179,21,29,35,41,5,,"CCGT D1_Integrated Programme Schedule;OEM (Engineering & Deliverables);CIRCULATING WATER AREA;CIRCULATING WATER PUMP BUILDING;Circulating Water Pumps PAC",0,2,0.0,0.0008138352,0.0,413,1.0,0.0000812387,0.0,0.0061538462,0.0,0.0020887728,0.0,0.9260089686,1.0,0.0
1.5.7.2.2-4,SI1PAC4B25,"TRANSPORT CIRC. CW PUMP PAC",7112,"CCGTD1_IPS",TT_Task,"61626",-,-,-,100,TK_Complete,01/07/2018,09/06/2018,18/08/2018,07/07/2018,"SI1PAC3B80 FS","SI1PAC3B80","SI1PAC4B42 FS","SI1PAC4B42",152,186,159,190,35,43,37,44,31,,"CCGT D1_Integrated Programme Schedule;OEM (Engineering & Deliverables);CIRCULATING WATER AREA;CIRCULATING WATER PUMP BUILDING;Circulating Water Pumps PAC",1,1,0.0000001242,0.0004069176,0.0004069176,48,1.0,0.0001503957,0.0068493151,0.0030769231,0.0001875,0.0010443864,0.0012870013,0.1076233184,1.0,0.0283369572
1.5.7.2.2-5,SI1PAC4B42,"(OTD-OS) ON SITE CIRC. CW PUMP PAC",7112,"CCGTD1_IPS",TT_FinMile,"61626",-,-,-,100,TK_Complete,18/08/2018,07/07/2018,18/08/2018,07/07/2018,"SI1PAC4B25 FS","SI1PAC4B25","SI1PAC4E42 SS","SI1PAC4E42",159,190,159,190,37,44,37,44,34,,"CCGT D1_Integrated Programme Schedule;OEM (Engineering & Deliverables);CIRCULATING WATER AREA;CIRCULATING WATER PUMP BUILDING;Circulating Water Pumps PAC",1,1,0.0000000828,0.0002034588,0.0006103764,0,1.0,0.0000812387,0.0068493151,0.0030769231,0.000125,0.0005221932,0.0019305019,0.0,1.0,0.0
1.5.7.2.3,61625,"Debris Filter for Main Cooling System: Strainer/Skid PBB",7112,"CCGTD1_IPS",WBS,"61623",,,,100,Complete,14/01/2017,19/12/2016,15/03/2018,17/01/2018,,,,,76,109,137,165,17,25,32,38,,,"CCGT D1_Integrated Programme Schedule;OEM (Engineering & Deliverables);CIRCULATING WATER AREA;CIRCULATING WATER PUMP BUILDING"
1.5.7.2.3-1,SI1PBB2B90,"CONTRACT REVIEW, PREPARATION RFQ DEBRIS FILTER PBB",7112,"CCGTD1_IPS",TT_Task,"61625",-,-,-,100,TK_Complete,14/01/2017,19/12/2016,10/02/2017,15/01/2017,"SI----2C00 FS","SI----2C00","SI1PBB2B10#5 SS,SI1PBB2B95 FS","SI1PBB2B10#5,SI1PBB2B95",76,109,80,113,17,25,18,26,1,,"CCGT D1_Integrated Programme Schedule;OEM (Engineering & Deliverables);CIRCULATING WATER AREA;CIRCULATING WATER PUMP BUILDING;Debris Filter for Main Cooling System: Strainer/Skid PBB",1,1,0.0000000414,0.0002034588,0.0002034588,27,1.0,0.0000837826,0.0068493151,0.0030769231,0.0000625,0.0005221932,0.0006435006,0.0605381166,1.0,0.0010423676
1.5.7.2.3-2,SI1PBB3B90,"(RFS) READY FOR SHIPMENT DEBRIS FILTER PBB",7112,"CCGTD1_IPS",TT_FinMile,"61625",-,-,-,100,TK_Complete,26/01/2018,18/12/2017,26/01/2018,18/12/2017,"SI1PBB3B85 FS","SI1PBB3B85","SI1PBB4B47 FS","SI1PBB4B47",130,161,130,161,30,37,30,37,17,,"CCGT D1_Integrated Programme Schedule;OEM (Engineering & Deliverables);CIRCULATING WATER AREA;CIRCULATING WATER PUMP BUILDING;Debris Filter for Main Cooling System: Strainer/Skid PBB",1,1,0.0000002898,0.001017294,0.0004069176,0,1.0,0.0000812387,0.0068493151,0.0030769231,0.0004375,0.0026109661,0.0012870013,0.0,1.0,0.0
1.5.7.2.3-3,SI1PBB2B105,"(DF) FINAL INPUT FOR M2 DEBRIS FILTER PBB",7112,"CCGTD1_IPS",TT_FinMile,"61625",-,-,-,100,TK_Complete,31/05/2017,06/05/2017,31/05/2017,06/05/2017,"SI1PBB2B100 FS","SI1PBB2B100","","",96,129,96,129,22,30,22,30,6,,"CCGT D1_Integrated Programme Schedule;OEM (Engineering & Deliverables);CIRCULATING WATER AREA;CIRCULATING WATER PUMP BUILDING;Debris Filter for Main Cooling System: Strainer/Skid PBB",1,0,0.0,0.0,0.0002034588,0,1.0,0.0000812387,0.0068493151,0.0,0.0,0.0,0.0006435006,0.0,1.0,0.0
1.5.7.2.3-4,SI1PBB2B110,"(DF) FINAL INPUT FOR MS3 DEBRIS FILTER PBB",7112,"CCGTD1_IPS",TT_FinMile,"61625",-,-,-,100,TK_Complete,06/05/2017,29/04/2017,06/05/2017,29/04/2017,"SI1PBB2B100 FS,SI----2C00 FS","SI1PBB2B100,SI----2C00","SI1UPY2-10 FS","SI1UPY2-10",92,128,92,128,21,29,21,29,5,,"CCGT D1_Integrated Programme Schedule;OEM (Engineering & Deliverables);CIRCULATING WATER AREA;CIRCULATING WATER PUMP BUILDING;Debris Filter for Main Cooling System: Strainer/Skid PBB",2,1,0.000000276,0.001017294,0.0004069176,0,1.0,0.0000812387,0.0136986301,0.0030769231,0.0004166667,0.0026109661,0.0012870013,0.0,1.0,0.0
1.5.7.2.3-5,SI1PBB3B85,"DETAIL DESIGN, MANUFACTURING, SHOP TEST DEBRIS FILTER PBB",7112,"CCGTD1_IPS",TT_Task,"61625",-,-,-,100,TK_Complete,15/05/2017,23/04/2017,05/02/2018,18/12/2017,"SI1PBB2B100 FS","SI1PBB2B100","SI1PBB3B90 FS","SI1PBB3B90",93,127,131,161,21,29,30,37,5,,"CCGT D1_Integrated Programme Schedule;OEM (Engineering & Deliverables);CIRCULATING WATER AREA;CIRCULATING WATER PUMP BUILDING;Debris Filter for Main Cooling System: Strainer/Skid PBB",1,1,0.0000001242,0.0012207528,0.0002034588,266,1.0,0.0001503957,0.0068493151,0.0030769231,0.0001875,0.0031331593,0.0006435006,0.5964125561,1.0,0.0283369572
1.5.7.2.3-6,SI1PBB4B47,"TRANSPORT DEBRIS FILTER PBB",7112,"CCGTD1_IPS",TT_Task,"61625",-,-,-,100,TK_Complete,26/01/2018,19/12/2017,15/03/2018,17/01/2018,"SI1PBB3B90 FS","SI1PBB3B90","SI1UPY3-20 FS","SI1UPY3-20",130,161,137,165,30,37,32,38,17,,"CCGT D1_Integrated Programme Schedule;OEM (Engineering & Deliverables);CIRCULATING WATER AREA;CIRCULATING WATER PUMP BUILDING;Debris Filter for Main Cooling System: Strainer/Skid PBB",1,1,0.0000003726,0.0008138352,0.0006103764,48,1.0,0.0001503957,0.0068493151,0.0030769231,0.0005625,0.0020887728,0.0019305019,0.1076233184,1.0,0.0283369572
1.5.7.2.3-7,SI1PBB2B95,"QUOTATION STAGE DEBRIS FILTER PBB",7112,"CCGTD1_IPS",TT_Task,"61625",-,-,-,100,TK_Complete,05/03/2017,26/01/2017,18/03/2017,21/04/2017,"SI1PBB2B90 FS,SI-3062-17 FS","SI1PBB2B90,SI-3062-17","SI1PBB2B10#5 FF","SI1PBB2B10#5",83,114,85,127,19,26,19,29,3,,"CCGT D1_Integrated Programme Schedule;OEM (Engineering & Deliverables);CIRCULATING WATER AREA;CIRCULATING WATER PUMP BUILDING;Debris Filter for Main Cooling System: Strainer/Skid PBB",2,0,0.0,0.0,0.0006103764,13,0.0,0.0001544257,0.0136986301,0.0,0.0,0.0,0.0019305019,0.0291479821,0.0,0.0299882218
1.5.7.2.3-8,SI1PBB2B100,"ORDER PLACED DEBRIS FILTER PBB",7112,"CCGTD1_IPS",TT_Mile,"61625",-,-,-,100,TK_Complete,15/05/2017,22/04/2017,15/05/2017,22/04/2017,"","","SI1PBB2B105 FS,SI1PBB2B110 FS,SI1PBB3B85 FS","SI1PBB2B105,SI1PBB2B110,SI1PBB3B85",93,127,93,127,21,29,21,29,5,,"CCGT D1_Integrated Programme Schedule;OEM (Engineering & Deliverables);CIRCULATING WATER AREA;CIRCULATING WATER PUMP BUILDING;Debris Filter for Main Cooling System: Strainer/Skid PBB",0,3,0.0,0.0022380468,0.0,0,1.0,0.0000812387,0.0,0.0092307692,0.0,0.0057441253,0.0,0.0,1.0,0.0
1.5.7.2.4,61624,"Concrete / Formwork / Reinforcement UQA",7112,"CCGTD1_IPS",WBS,"61623",,,,100,Complete,03/05/2017,01/04/2017,06/06/2017,28/04/2017,,,,,92,124,96,128,21,28,22,29,,,"CCGT D1_Integrated Programme Schedule;OEM (Engineering & Deliverables);CIRCULATING WATER AREA;CIRCULATING WATER PUMP BUILDING"
1.5.7.2.4-1,SI1UQA2E77,"PREPARATION BASIC BUILDING DWGS 10UQA",7112,"CCGTD1_IPS",TT_Task,"61624",-,-,-,100,TK_Complete,03/05/2017,01/04/2017,06/06/2017,28/04/2017,"SI1UQA2E79 FF,SI-3412-20 FS","SI1UQA2E79,SI-3412-20","SI1BZP2G30 FS","SI1BZP2G30",92,124,96,128,21,28,22,29,5,,"CCGT D1_Integrated Programme Schedule;OEM (Engineering & Deliverables);CIRCULATING WATER AREA;CIRCULATING WATER PUMP BUILDING;Concrete / Formwork / Reinforcement UQA",2,1,0.0000001242,0.0002034588,0.0006103764,34,1.0,0.0001538896,0.0136986301,0.0030769231,0.0001875,0.0005221932,0.0019305019,0.0762331839,1.0,0.029768542
1.5.7.2.4-2,SI1UQA2E79,"(MS3) CONCRETE STRUCTURE FINAL DIMENSIONS LOADS AVAILABLE 10UQA",7112,"CCGTD1_IPS",TT_FinMile,"61624",-,-,-,100,TK_Complete,16/05/2017,15/04/2017,16/05/2017,15/04/2017,"","","SI1UQA2E77 FF","SI1UQA2E77",93,126,93,126,21,29,21,29,5,,"CCGT D1_Integrated Programme Schedule;OEM (Engineering & Deliverables);CIRCULATING WATER AREA;CIRCULATING WATER PUMP BUILDING;Concrete / Formwork / Reinforcement UQA",0,1,0.0,0.0004069176,0.0,0,1.0,0.0000812387,0.0,0.0030769231,0.0,0.0010443864,0.0,0.0,1.0,0.0
1.5.7.3,61621,"STRUCTURE FOR POWER CONTROL CENTER",7112,"CCGTD1_IPS",WBS,"61618",,,,100,Complete,26/06/2017,02/06/2017,06/08/2017,24/08/2017,,,,,99,133,105,144,23,31,24,33,,,"CCGT D1_Integrated Programme Schedule;OEM (Engineering & Deliverables);CIRCULATING WATER AREA"
1.5.7.3.1,61622,"Cable Support System BZP",7112,"CCGTD1_IPS",WBS,"61621",,,,100,Complete,26/06/2017,02/06/2017,06/08/2017,24/08/2017,,,,,99,133,105,144,23,31,24,33,,,"CCGT D1_Integrated Programme Schedule;OEM (Engineering & Deliverables);CIRCULATING WATER AREA;STRUCTURE FOR POWER CONTROL CENTER"
1.5.7.3.1-1,SI1BZP2G30,"DETAIL DESIGN CABLE SUPPORT SYSTEM UQA ELECTRICAL ROOM",7112,"CCGTD1_IPS",TT_Task,"61622",-,-,-,100,TK_Complete,26/06/2017,02/06/2017,06/08/2017,24/08/2017,"SI1UQA2E77 FS","SI1UQA2E77","","",99,133,105,144,23,31,24,33,8,,"CCGT D1_Integrated Programme Schedule;OEM (Engineering & Deliverables);CIRCULATING WATER AREA;STRUCTURE FOR POWER CONTROL CENTER;Cable Support System BZP",1,0,0.0,0.0,0.0008138352,41,0.0,0.0002122171,0.0068493151,0.0,0.0,0.0,0.0025740026,0.0919282511,0.0,0.0536681293
1.5.7.4,61619,"CIRCULATING WATER PIPING (OUTSIDE BUILDINGS)",7112,"CCGTD1_IPS",WBS,"61618",,,,100,Complete,25/06/2017,05/06/2017,06/08/2018,30/11/2018,,,,,99,133,157,211,23,31,36,49,,,"CCGT D1_Integrated Programme Schedule;OEM (Engineering & Deliverables);CIRCULATING WATER AREA"
1.5.7.4.1,61620,"Structure for Condenser Tube Cleaning Sys. PAH - Module UPY00Y",7112,"CCGTD1_IPS",WBS,"61619",,,,100,Complete,25/06/2017,05/06/2017,06/08/2018,30/11/2018,,,,,99,133,157,211,23,31,36,49,,,"CCGT D1_Integrated Programme Schedule;OEM (Engineering & Deliverables);CIRCULATING WATER AREA;CIRCULATING WATER PIPING (OUTSIDE BUILDINGS)"
1.5.7.4.1-1,SI1UPY2B77,"(MS3) STEEL STRUCTURE, FINAL DIMENSIONS AND LOADS AVAILABLE UPY00Y",7112,"CCGTD1_IPS",TT_FinMile,"61620",-,-,-,100,TK_Complete,25/06/2017,07/06/2017,25/06/2017,07/06/2017,"SI----2C00 FS","SI----2C00","SI1UPY2-10 FS","SI1UPY2-10",99,133,99,133,23,31,23,31,7,,"CCGT D1_Integrated Programme Schedule;OEM (Engineering & Deliverables);CIRCULATING WATER AREA;CIRCULATING WATER PIPING (OUTSIDE BUILDINGS);Structure for Condenser Tube Cleaning Sys. PAH - Module UPY00Y",1,1,0.000000069,0.001017294,0.0002034588,0,1.0,0.0000812387,0.0068493151,0.0030769231,0.0001041667,0.0026109661,0.0006435006,0.0,1.0,0.0
1.5.7.4.1-2,SI1UPY2-10,"DETAIL DESIGN UPY00Y MODULE",7112,"CCGTD1_IPS",TT_Task,"61620",-,-,-,100,TK_Complete,26/06/2017,05/06/2017,03/12/2017,17/11/2017,"SI1PBB2B110 FS,SI1PAH2-60 FS,SI1PAH2-65 FS,SI1UPY2B77 FS","SI1PBB2B110,SI1PAH2-60,SI1PAH2-65,SI1UPY2B77","SI1UPY3-10 FS","SI1UPY3-10",99,133,122,157,23,31,28,36,8,,"CCGT D1_Integrated Programme Schedule;OEM (Engineering & Deliverables);CIRCULATING WATER AREA;CIRCULATING WATER PIPING (OUTSIDE BUILDINGS);Structure for Condenser Tube Cleaning Sys. PAH - Module UPY00Y",4,1,0.000002153,0.0008138352,0.0026449644,160,0.2,0.0003578668,0.0273972603,0.0030769231,0.00325,0.0020887728,0.0083655084,0.3587443946,0.2,0.1133478288
1.5.7.4.1-3,SI1UPY3-25,"MANUFACTURING UPY00Y MODULE",7112,"CCGTD1_IPS",TT_Task,"61620",-,-,-,100,TK_Complete,25/03/2018,22/02/2018,01/07/2018,15/11/2018,"SI1UPY3-10 FS,SI1UPY3-20 FF","SI1UPY3-10,SI1UPY3-20","SI1UPY4-25 FS","SI1UPY4-25",138,170,152,208,32,39,35,48,23,,"CCGT D1_Integrated Programme Schedule;OEM (Engineering & Deliverables);CIRCULATING WATER AREA;CIRCULATING WATER PIPING (OUTSIDE BUILDINGS);Structure for Condenser Tube Cleaning Sys. PAH - Module UPY00Y",2,1,0.000002153,0.0004069176,0.0052899288,98,0.0,0.0005455738,0.0136986301,0.0030769231,0.00325,0.0010443864,0.0167310167,0.2197309417,0.0,0.1902604181
1.5.7.4.1-4,SI1UPY4-25,"TRANSPORT UPY00Y MODULE",7112,"CCGTD1_IPS",TT_Task,"61620",-,-,-,100,TK_Complete,23/07/2018,23/11/2018,06/08/2018,30/11/2018,"SI1UPY3-25 FS","SI1UPY3-25","SI1UPY4-42 FS","SI1UPY4-42",155,210,157,211,36,49,36,49,32,,"CCGT D1_Integrated Programme Schedule;OEM (Engineering & Deliverables);CIRCULATING WATER AREA;CIRCULATING WATER PIPING (OUTSIDE BUILDINGS);Structure for Condenser Tube Cleaning Sys. PAH - Module UPY00Y",1,1,0.0000011179,0.0002034588,0.0054933876,14,1.0,0.000545982,0.0068493151,0.0030769231,0.0016875,0.0005221932,0.0173745174,0.0313901345,1.0,0.1904276845
1.5.7.4.1-5,SI1UPY4-42,"(OTD-OS) ON SITE UPY00Y MODULE",7112,"CCGTD1_IPS",TT_FinMile,"61620",-,-,-,100,TK_Complete,06/08/2018,30/11/2018,06/08/2018,30/11/2018,"SI1UPY4-25 FS","SI1UPY4-25","","",157,211,157,211,36,49,36,49,34,,"CCGT D1_Integrated Programme Schedule;OEM (Engineering & Deliverables);CIRCULATING WATER AREA;CIRCULATING WATER PIPING (OUTSIDE BUILDINGS);Structure for Condenser Tube Cleaning Sys. PAH - Module UPY00Y",1,0,0.0,0.0,0.0056968464,0,1.0,0.0000812387,0.0068493151,0.0,0.0,0.0,0.018018018,0.0,1.0,0.0
1.5.7.4.1-6,SI1UPY3-10,"DELIVERY OF SKID FRAME STEEL, PIPING MATERIAL UPY00Y MODULE",7112,"CCGTD1_IPS",TT_Task,"61620",-,-,-,100,TK_Complete,19/12/2017,18/11/2017,24/03/2018,21/02/2018,"SI0--P4A15 FF,SI1UPY2-10 FS,SI---P2J85 FS","SI0--P4A15,SI1UPY2-10,SI---P2J85","SI1UPY3-25 FS","SI1UPY3-25",124,157,138,170,29,36,32,39,16,,"CCGT D1_Integrated Programme Schedule;OEM (Engineering & Deliverables);CIRCULATING WATER AREA;CIRCULATING WATER PIPING (OUTSIDE BUILDINGS);Structure for Condenser Tube Cleaning Sys. PAH - Module UPY00Y",3,1,0.0000022358,0.0006103764,0.0036622584,95,1.0,0.0004640963,0.0205479452,0.0030769231,0.003375,0.0015665796,0.0115830116,0.2130044843,1.0,0.1568751642
1.5.7.4.1-7,SI1UPY3-20,"DELIVERY OF COMPONENTS UPY00Y MODULE",7112,"CCGTD1_IPS",TT_FinMile,"61620",-,-,-,100,TK_Complete,26/02/2018,26/01/2018,26/02/2018,26/01/2018,"SI1PBB4B47 FS,SI1PAH4-27 FS","SI1PBB4B47,SI1PAH4-27","SI1UPY3-25 FF","SI1UPY3-25",134,167,134,167,31,38,31,38,19,,"CCGT D1_Integrated Programme Schedule;OEM (Engineering & Deliverables);CIRCULATING WATER AREA;CIRCULATING WATER PIPING (OUTSIDE BUILDINGS);Structure for Condenser Tube Cleaning Sys. PAH - Module UPY00Y",2,1,0.0000007453,0.0006103764,0.003051882,0,1.0,0.0000812387,0.0136986301,0.0030769231,0.001125,0.0015665796,0.0096525097,0.0,1.0,0.0
1.5.8,61608,"SYSTEMS / PIPING / COMMISSIONING",7112,"CCGTD1_IPS",WBS,"58234",,,,100,Complete,26/08/2017,26/07/2017,25/03/2019,23/11/2018,,,,,108,140,190,210,25,32,44,49,,,"CCGT D1_Integrated Programme Schedule;OEM (Engineering & Deliverables)"
1.5.8.1,61616,"TEMPORARY PIPES FOR ACID CLEANING AND STEAM BLOWING",7112,"CCGTD1_IPS",WBS,"61608",,,,100,Complete,02/05/2018,16/11/2018,19/06/2018,23/11/2018,,,,,144,209,150,210,33,48,35,49,,,"CCGT D1_Integrated Programme Schedule;OEM (Engineering & Deliverables);SYSTEMS / PIPING / COMMISSIONING"
1.5.8.1.1,61617,"Temp. Piping for Steam Blowing Pipes, Insulation, Valves ZTB",7112,"CCGTD1_IPS",WBS,"61616",,,,100,Complete,02/05/2018,16/11/2018,19/06/2018,23/11/2018,,,,,144,209,150,210,33,48,35,49,,,"CCGT D1_Integrated Programme Schedule;OEM (Engineering & Deliverables);SYSTEMS / PIPING / COMMISSIONING;TEMPORARY PIPES FOR ACID CLEANING AND STEAM BLOWING"
1.5.8.1.1-1,SI-ZTB4A27,"TRANSPORT PIPING FOR STEAM BLOWING SYSTEM ZTB",7112,"CCGTD1_IPS",TT_Task,"61617",-,-,-,100,TK_Complete,02/05/2018,16/11/2018,19/06/2018,23/11/2018,"","","","",144,209,150,210,33,48,35,49,27,,"CCGT D1_Integrated Programme Schedule;OEM (Engineering & Deliverables);SYSTEMS / PIPING / COMMISSIONING;TEMPORARY PIPES FOR ACID CLEANING AND STEAM BLOWING;Temp. Piping for Steam Blowing Pipes, Insulation, Valves ZTB",0,0,0.0,0.0,0.0,48,1.0,0.0000812387,0.0,0.0,0.0,0.0,0.0,0.1076233184,1.0,0.0
1.5.8.2,61609,"PIPES AND VALVES",7112,"CCGTD1_IPS",WBS,"61608",,,,100,Complete,26/08/2017,26/07/2017,25/03/2019,20/07/2018,,,,,108,140,190,192,25,32,44,44,,,"CCGT D1_Integrated Programme Schedule;OEM (Engineering & Deliverables);SYSTEMS / PIPING / COMMISSIONING"
1.5.8.2.1,61615,"Valves All Systems",7112,"CCGTD1_IPS",WBS,"61609",,,,100,Complete,05/03/2018,02/02/2018,18/03/2018,23/02/2018,,,,,135,168,137,171,31,39,32,39,,,"CCGT D1_Integrated Programme Schedule;OEM (Engineering & Deliverables);SYSTEMS / PIPING / COMMISSIONING;PIPES AND VALVES"
1.5.8.2.1-1,SI---P4I25,"TRANSPORT VALVES",7112,"CCGTD1_IPS",TT_Task,"61615",-,-,-,100,TK_Complete,05/03/2018,02/02/2018,18/03/2018,23/02/2018,"","","SI---P4I42 FS","SI---P4I42",135,168,137,171,31,39,32,39,21,,"CCGT D1_Integrated Programme Schedule;OEM (Engineering & Deliverables);SYSTEMS / PIPING / COMMISSIONING;PIPES AND VALVES;Valves All Systems",0,1,0.0,0.0002034588,0.0,13,0.2,0.0000812387,0.0,0.0030769231,0.0,0.0005221932,0.0,0.0291479821,0.2,0.0
1.5.8.2.1-2,SI---P4I42,"(OTD-OS) ON SITE VALVES",7112,"CCGTD1_IPS",TT_FinMile,"61615",-,-,-,100,TK_Complete,11/03/2018,23/02/2018,11/03/2018,23/02/2018,"SI---P4I25 FS","SI---P4I25","","",136,171,136,171,31,39,31,39,22,,"CCGT D1_Integrated Programme Schedule;OEM (Engineering & Deliverables);SYSTEMS / PIPING / COMMISSIONING;PIPES AND VALVES;Valves All Systems",1,0,0.0,0.0,0.0002034588,0,1.0,0.0000812387,0.0068493151,0.0,0.0,0.0,0.0006435006,0.0,1.0,0.0
1.5.8.2.2,61614,"Supply Piping & Support (GRP MATERIAL)",7112,"CCGTD1_IPS",WBS,"61609",,,,100,Complete,17/11/2017,18/10/2017,04/01/2018,25/12/2017,,,,,120,152,127,162,28,35,29,37,,,"CCGT D1_Integrated Programme Schedule;OEM (Engineering & Deliverables);SYSTEMS / PIPING / COMMISSIONING;PIPES AND VALVES"
1.5.8.2.2-1,SI0--P4A15,"TRANSPORT TO PREFABRICATION SHOP (GRP MATERIALS)",7112,"CCGTD1_IPS",TT_Task,"61614",-,-,-,100,TK_Complete,17/11/2017,18/10/2017,04/01/2018,25/12/2017,"","","SI1UPY3-10 FF","SI1UPY3-10",120,152,127,162,28,35,29,37,14,,"CCGT D1_Integrated Programme Schedule;OEM (Engineering & Deliverables);SYSTEMS / PIPING / COMMISSIONING;PIPES AND VALVES;Supply Piping & Support (GRP MATERIAL)",0,1,0.0,0.0008138352,0.0,48,0.0,0.0000812387,0.0,0.0030769231,0.0,0.0020887728,0.0,0.1076233184,0.0,0.0
1.5.8.2.3,61613,"Supply Piping (NON- ALLOYED MATERIAL) & Support",7112,"CCGTD1_IPS",WBS,"61609",,,,100,Complete,09/10/2017,08/09/2017,12/11/2017,12/10/2017,,,,,114,147,119,151,26,34,27,35,,,"CCGT D1_Integrated Programme Schedule;OEM (Engineering & Deliverables);SYSTEMS / PIPING / COMMISSIONING;PIPES AND VALVES"
1.5.8.2.3-1,SI0--P4A10,"TRANSPORT TO PREFABRICATION SHOP (NON-ALLOYED MATERIALS)",7112,"CCGTD1_IPS",TT_Task,"61613",-,-,-,100,TK_Complete,09/10/2017,08/09/2017,12/11/2017,12/10/2017,"","","SI1--P3A35 FS","SI1--P3A35",114,147,119,151,26,34,27,35,12,,"CCGT D1_Integrated Programme Schedule;OEM (Engineering & Deliverables);SYSTEMS / PIPING / COMMISSIONING;PIPES AND VALVES;Supply Piping (NON- ALLOYED MATERIAL) & Support",0,1,0.0,0.0028484232,0.0,34,1.0,0.0000812387,0.0,0.0030769231,0.0,0.007310705,0.0,0.0762331839,1.0,0.0
1.5.8.2.4,61612,"Supply Piping (ALLOYED MATERIAL)",7112,"CCGTD1_IPS",WBS,"61609",,,,100,Complete,31/10/2017,01/10/2017,27/11/2017,28/10/2017,,,,,117,150,121,154,27,35,28,35,,,"CCGT D1_Integrated Programme Schedule;OEM (Engineering & Deliverables);SYSTEMS / PIPING / COMMISSIONING;PIPES AND VALVES"
1.5.8.2.4-1,SI0--P4E10,"TRANSPORT TO PREFABRICATION SHOP (ALLOYED MATERIAL)",7112,"CCGTD1_IPS",TT_Task,"61612",-,-,-,100,TK_Complete,31/10/2017,01/10/2017,27/11/2017,28/10/2017,"","","SI1--P3A35 FS","SI1--P3A35",117,150,121,154,27,35,28,35,13,,"CCGT D1_Integrated Programme Schedule;OEM (Engineering & Deliverables);SYSTEMS / PIPING / COMMISSIONING;PIPES AND VALVES;Supply Piping (ALLOYED MATERIAL)",0,1,0.0,0.0028484232,0.0,27,1.0,0.0000812387,0.0,0.0030769231,0.0,0.007310705,0.0,0.0605381166,1.0,0.0
1.5.8.2.5,61611,"Detal Design / Supply Piping DN<80 and Secondary Steel all sizes",7112,"CCGTD1_IPS",WBS,"61609",,,,100,Complete,26/08/2017,26/07/2017,28/05/2018,02/05/2018,,,,,108,140,147,180,25,32,34,42,,,"CCGT D1_Integrated Programme Schedule;OEM (Engineering & Deliverables);SYSTEMS / PIPING / COMMISSIONING;PIPES AND VALVES"
1.5.8.2.5-1,SI1--P4H42,"TRANSPORT (2ND) PIPING (DN <80)",7112,"CCGTD1_IPS",TT_Task,"61611",-,-,-,100,TK_Complete,14/05/2018,22/04/2018,27/05/2018,02/05/2018,"SI1--P4A46 SS,SI1--P4H25 FS","SI1--P4A46,SI1--P4H25","SI1--P4H44 FS","SI1--P4H44",145,179,147,180,34,41,34,42,27,,"CCGT D1_Integrated Programme Schedule;OEM (Engineering & Deliverables);SYSTEMS / PIPING / COMMISSIONING;PIPES AND VALVES;Detal Design / Supply Piping DN<80 and Secondary Steel all sizes",2,1,0.0000003726,0.0002034588,0.0018311292,13,1.0,0.0004218463,0.0136986301,0.0030769231,0.0005625,0.0005221932,0.0057915058,0.0291479821,1.0,0.13956332
1.5.8.2.5-2,SI1--P4H44,"ON SITE PIPES (2ND) (DN <80)",7112,"CCGTD1_IPS",TT_Mile,"61611",-,-,-,100,TK_Complete,28/05/2018,02/05/2018,28/05/2018,02/05/2018,"SI1--P4H42 FS","SI1--P4H42","","",147,180,147,180,34,42,34,42,29,,"CCGT D1_Integrated Programme Schedule;OEM (Engineering & Deliverables);SYSTEMS / PIPING / COMMISSIONING;PIPES AND VALVES;Detal Design / Supply Piping DN<80 and Secondary Steel all sizes",1,0,0.0,0.0,0.002034588,0,1.0,0.0000812387,0.0068493151,0.0,0.0,0.0,0.0064350064,0.0,1.0,0.0
1.5.8.2.5-3,SI1--P3H50,"ON SITE FINAL ISOs < 80",7112,"CCGTD1_IPS",TT_Mile,"61611",-,-,-,100,TK_Complete,26/02/2018,18/02/2018,26/02/2018,18/02/2018,"SI1--P3H25 FS","SI1--P3H25","SI1--P4H46 FS","SI1--P4H46",134,170,134,170,31,39,31,39,19,,"CCGT D1_Integrated Programme Schedule;OEM (Engineering & Deliverables);SYSTEMS / PIPING / COMMISSIONING;PIPES AND VALVES;Detal Design / Supply Piping DN<80 and Secondary Steel all sizes",1,1,0.0000000207,0.0002034588,0.0002034588,0,1.0,0.0000812387,0.0068493151,0.0030769231,0.00003125,0.0005221932,0.0006435006,0.0,1.0,0.0
1.5.8.2.5-4,SI1--P3H25,"DETAIL DESIGN, SUPPLY, SHOP TEST  PIPING (DN <80)  AND SECONDARY STEEL  ALL SIZES",7112,"CCGTD1_IPS",TT_Task,"61611",-,-,-,100,TK_Complete,26/08/2017,26/07/2017,28/01/2018,29/12/2017,"","","SI1--P4H25 FS,SI1--P3H50 FS","SI1--P4H25,SI1--P3H50",108,140,130,163,25,32,30,38,11,,"CCGT D1_Integrated Programme Schedule;OEM (Engineering & Deliverables);SYSTEMS / PIPING / COMMISSIONING;PIPES AND VALVES;Detal Design / Supply Piping DN<80 and Secondary Steel all sizes",0,2,0.0,0.001017294,0.0,155,0.6,0.0000812387,0.0,0.0061538462,0.0,0.0026109661,0.0,0.3475336323,0.6,0.0
1.5.8.2.5-5,SI1--P4H25,"TRANSPORT (1ST) PIPING (DN <80)",7112,"CCGTD1_IPS",TT_Task,"61611",-,-,-,100,TK_Complete,02/05/2018,30/03/2018,08/05/2018,10/04/2018,"SI1--P3H25 FS,SI1--P4A25 SS","SI1--P3H25,SI1--P4A25","SI1--P4H46 FS,SI1--P4H42 FS","SI1--P4H46,SI1--P4H42",144,176,144,177,33,41,33,41,26,,"CCGT D1_Integrated Programme Schedule;OEM (Engineering & Deliverables);SYSTEMS / PIPING / COMMISSIONING;PIPES AND VALVES;Detal Design / Supply Piping DN<80 and Secondary Steel all sizes",2,2,0.0000007246,0.0006103764,0.0012207528,6,0.6,0.0002410661,0.0136986301,0.0061538462,0.00109375,0.0015665796,0.0038610039,0.0134529148,0.6,0.0654889488
1.5.8.2.5-6,SI1--P4H46,"ON SITE PIPES (1ST) (DN <80)",7112,"CCGTD1_IPS",TT_Mile,"61611",-,-,-,100,TK_Complete,09/05/2018,10/04/2018,09/05/2018,10/04/2018,"SI1--P4H25 FS,SI1--P3H50 FS","SI1--P4H25,SI1--P3H50","","",145,177,145,177,33,41,33,41,27,,"CCGT D1_Integrated Programme Schedule;OEM (Engineering & Deliverables);SYSTEMS / PIPING / COMMISSIONING;PIPES AND VALVES;Detal Design / Supply Piping DN<80 and Secondary Steel all sizes",2,0,0.0,0.0,0.0016276704,0,1.0,0.0000812387,0.0136986301,0.0,0.0,0.0,0.0051480051,0.0,1.0,0.0
1.5.8.2.6,61610,"Detal Design / Supply Piping DN>=80 and Standard Support Parts all sizes",7112,"CCGTD1_IPS",WBS,"61609",,,,100,Complete,26/08/2017,04/08/2017,25/03/2019,20/07/2018,,,,,108,142,190,192,25,33,44,44,,,"CCGT D1_Integrated Programme Schedule;OEM (Engineering & Deliverables);SYSTEMS / PIPING / COMMISSIONING;PIPES AND VALVES"
1.5.8.2.6-1,SI1--P4A42,"TRANSPORT (2ND) PIPING (DN >=80) AND STANDARD SUPPORT PARTS ALL SIZES",7112,"CCGTD1_IPS",TT_Task,"61610",-,-,-,100,TK_Complete,12/03/2019,20/04/2018,25/03/2019,02/05/2018,"SI1--P4A25 FS","SI1--P4A25","SI1--P4A46 FS,SI1--P4A44 FS","SI1--P4A46,SI1--P4A44",188,179,190,180,44,41,44,42,48,,"CCGT D1_Integrated Programme Schedule;OEM (Engineering & Deliverables);SYSTEMS / PIPING / COMMISSIONING;PIPES AND VALVES;Detal Design / Supply Piping DN>=80 and Standard Support Parts all sizes",1,2,0.0000010351,0.0014242116,0.001017294,13,1.0,0.0002776911,0.0068493151,0.0061538462,0.0015625,0.0036553525,0.0032175032,0.0291479821,1.0,0.0804959819
1.5.8.2.6-2,SI1--P4A44,"ON SITE (2ND) PIPES (DN >=80) AND STANDARD SUPPORT PARTS ALL SIZES",7112,"CCGTD1_IPS",TT_Mile,"61610",-,-,-,100,TK_Complete,02/05/2018,02/05/2018,02/05/2018,02/05/2018,"SI1--P4A42 FS","SI1--P4A42","","",144,180,144,180,33,42,33,42,26,,"CCGT D1_Integrated Programme Schedule;OEM (Engineering & Deliverables);SYSTEMS / PIPING / COMMISSIONING;PIPES AND VALVES;Detal Design / Supply Piping DN>=80 and Standard Support Parts all sizes",1,0,0.0,0.0,0.0012207528,0,1.0,0.0000812387,0.0068493151,0.0,0.0,0.0,0.0038610039,0.0,1.0,0.0
1.5.8.2.6-3,SI1--P4A46,"TRANSPORT (3RD) PIPING (DN >=80) AND STANDARD SUPPORT PARTS ALL SIZES",7112,"CCGTD1_IPS",TT_Task,"61610",-,-,-,100,TK_Complete,14/05/2018,04/07/2018,27/05/2018,13/07/2018,"SI1--P4A42 FS","SI1--P4A42","SI1--P4A50 FS,SI1--P4H42 SS,SI1--P4A48 FS","SI1--P4A50,SI1--P4H42,SI1--P4A48",145,189,147,191,34,44,34,44,27,,"CCGT D1_Integrated Programme Schedule;OEM (Engineering & Deliverables);SYSTEMS / PIPING / COMMISSIONING;PIPES AND VALVES;Detal Design / Supply Piping DN>=80 and Standard Support Parts all sizes",1,3,0.0000008281,0.001017294,0.0012207528,13,1.0,0.0003177611,0.0068493151,0.0092307692,0.00125,0.0026109661,0.0038610039,0.0291479821,1.0,0.0969146106
1.5.8.2.6-4,SI1--P4A48,"ON SITE (3RD) PIPES (DN >=80) AND STANDARD SUPPORT PARTS ALL SIZES",7112,"CCGTD1_IPS",TT_Mile,"61610",-,-,-,100,TK_Complete,28/05/2018,13/07/2018,28/05/2018,13/07/2018,"SI1--P4A46 FS","SI1--P4A46","","",147,191,147,191,34,44,34,44,29,,"CCGT D1_Integrated Programme Schedule;OEM (Engineering & Deliverables);SYSTEMS / PIPING / COMMISSIONING;PIPES AND VALVES;Detal Design / Supply Piping DN>=80 and Standard Support Parts all sizes",1,0,0.0,0.0,0.0014242116,0,1.0,0.0000812387,0.0068493151,0.0,0.0,0.0,0.0045045045,0.0,1.0,0.0
1.5.8.2.6-5,SI1--P4A50,"TRANSPORT (4TH) PIPING (DN >=80) AND STANDARD SUPPORT PARTS ALL SIZES",7112,"CCGTD1_IPS",TT_Task,"61610",-,-,-,100,TK_Complete,03/06/2018,16/07/2018,16/06/2018,20/07/2018,"SI1--P4A46 FS","SI1--P4A46","SI1--P4A52 FS","SI1--P4A52",148,191,150,192,34,44,35,44,29,,"CCGT D1_Integrated Programme Schedule;OEM (Engineering & Deliverables);SYSTEMS / PIPING / COMMISSIONING;PIPES AND VALVES;Detal Design / Supply Piping DN>=80 and Standard Support Parts all sizes",1,1,0.0000002898,0.0002034588,0.0014242116,13,1.0,0.0002165954,0.0068493151,0.0030769231,0.0004375,0.0005221932,0.0045045045,0.0291479821,1.0,0.0554621554
1.5.8.2.6-6,SI1--P4A52,"ON SITE (4TH) PIPES (DN >=80) AND STANDARD SUPPORT PARTS ALL SIZES",7112,"CCGTD1_IPS",TT_Mile,"61610",-,-,-,100,TK_Complete,17/06/2018,20/07/2018,17/06/2018,20/07/2018,"SI1--P4A50 FS","SI1--P4A50","","",150,192,150,192,35,44,35,44,30,,"CCGT D1_Integrated Programme Schedule;OEM (Engineering & Deliverables);SYSTEMS / PIPING / COMMISSIONING;PIPES AND VALVES;Detal Design / Supply Piping DN>=80 and Standard Support Parts all sizes",1,0,0.0,0.0,0.0016276704,0,1.0,0.0000812387,0.0068493151,0.0,0.0,0.0,0.0051480051,0.0,1.0,0.0
1.5.8.2.6-7,SI1--P4A25,"TRANSPORT (1ST) PIPING (DN >=80) AND STANDARD SUPPORT PARTS ALL SIZES",7112,"CCGTD1_IPS",TT_Task,"61610",-,-,-,100,TK_Complete,26/03/2018,20/03/2018,08/04/2018,10/04/2018,"SI1--P3A35 FS,SI1--P3-25 FS","SI1--P3A35,SI1--P3-25","SI1--P4H25 SS,SI1--P4A42 FS,SI1--P4A54 FS","SI1--P4H25,SI1--P4A42,SI1--P4A54",138,174,140,177,32,40,32,41,23,,"CCGT D1_Integrated Programme Schedule;OEM (Engineering & Deliverables);SYSTEMS / PIPING / COMMISSIONING;PIPES AND VALVES;Detal Design / Supply Piping DN>=80 and Standard Support Parts all sizes",2,3,0.0000017597,0.0022380468,0.0008138352,13,0.0,0.0003372494,0.0136986301,0.0092307692,0.00265625,0.0057441253,0.0025740026,0.0291479821,0.0,0.1048998799
1.5.8.2.6-8,SI1--P4A54,"ON SITE (1ST) PIPES (DN >=80) AND STANDARD SUPPORT PARTS ALL SIZES",7112,"CCGTD1_IPS",TT_Mile,"61610",-,-,-,100,TK_Complete,12/03/2019,10/04/2018,12/03/2019,10/04/2018,"SI1--P3A50 FS,SI1--P4A25 FS","SI1--P3A50,SI1--P4A25","","",188,177,188,177,44,41,44,41,48,,"CCGT D1_Integrated Programme Schedule;OEM (Engineering & Deliverables);SYSTEMS / PIPING / COMMISSIONING;PIPES AND VALVES;Detal Design / Supply Piping DN>=80 and Standard Support Parts all sizes",2,0,0.0,0.0,0.0012207528,0,1.0,0.0000812387,0.0136986301,0.0,0.0,0.0,0.0038610039,0.0,1.0,0.0
1.5.8.2.6-9,SI1--P3-25,"DETAIL DESIGN, SUPPLY, PREFAB., SHOP TEST STANDARD PIPING SUPPORT PARTS ALL SIZES",7112,"CCGTD1_IPS",TT_Task,"61610",-,-,-,100,TK_Complete,26/08/2017,04/08/2017,05/02/2018,14/01/2018,"","","SI1--P4A25 FS","SI1--P4A25",108,142,131,165,25,33,30,38,11,,"CCGT D1_Integrated Programme Schedule;OEM (Engineering & Deliverables);SYSTEMS / PIPING / COMMISSIONING;PIPES AND VALVES;Detal Design / Supply Piping DN>=80 and Standard Support Parts all sizes",0,1,0.0,0.0024415056,0.0,163,1.0,0.0000812387,0.0,0.0030769231,0.0,0.0062663185,0.0,0.365470852,1.0,0.0
1.5.8.2.6-10,SI1--P3A35,"PREFABRICATION, SHOP TEST ALLOYED AND OTHER PIPING MATERIAL (DN>=80) ALL SIZES",7112,"CCGTD1_IPS",TT_Task,"61610",-,-,-,100,TK_Complete,29/11/2017,20/11/2017,23/01/2018,02/03/2018,"SI0--P4A10 FS,SI0--P4E10 FS","SI0--P4A10,SI0--P4E10","SI1--P4A25 FS,SI1--P3A50 FS","SI1--P4A25,SI1--P3A50",122,157,129,172,28,36,30,40,15,,"CCGT D1_Integrated Programme Schedule;OEM (Engineering & Deliverables);SYSTEMS / PIPING / COMMISSIONING;PIPES AND VALVES;Detal Design / Supply Piping DN>=80 and Standard Support Parts all sizes",2,2,0.0000010765,0.0026449644,0.0004069176,55,0.0,0.0002195528,0.0136986301,0.0061538462,0.001625,0.0067885117,0.0012870013,0.1233183857,0.0,0.0566739144
1.5.8.2.6-11,SI1--P3A50,"ON SITE FINAL ISOs >= 80 / SUPPORT PARTS  ALL SIZES",7112,"CCGTD1_IPS",TT_Mile,"61610",-,-,-,100,TK_Complete,26/03/2018,03/03/2018,26/03/2018,03/03/2018,"SI1--P3A35 FS","SI1--P3A35","SI1--P4A54 FS","SI1--P4A54",138,172,138,172,32,40,32,40,23,,"CCGT D1_Integrated Programme Schedule;OEM (Engineering & Deliverables);SYSTEMS / PIPING / COMMISSIONING;PIPES AND VALVES;Detal Design / Supply Piping DN>=80 and Standard Support Parts all sizes",1,1,0.0000000621,0.0002034588,0.0006103764,0,1.0,0.0000812387,0.0068493151,0.0030769231,0.00009375,0.0005221932,0.0019305019,0.0,1.0,0.0
1.5.9,61565,"BOILER AREA",7112,"CCGTD1_IPS",WBS,"58234",,,,100,Complete,02/07/2016,09/07/2016,03/01/2019,21/02/2019,,,,,48,86,179,222,11,20,41,52,,,"CCGT D1_Integrated Programme Schedule;OEM (Engineering & Deliverables)"
1.5.9.1,61605,"CONCRETE STRUCTURE FOR SCR-SKID UVM",7112,"CCGTD1_IPS",WBS,"61565",,,,100,Complete,01/05/2017,15/04/2017,03/01/2019,21/02/2019,,,,,91,126,179,222,21,29,41,52,,,"CCGT D1_Integrated Programme Schedule;OEM (Engineering & Deliverables);BOILER AREA"
1.5.9.1.1,61607,"SCR Dosing & Unloading (incl. Tank)",7112,"CCGTD1_IPS",WBS,"61605",,,,100,Complete,15/05/2017,15/04/2017,03/01/2019,21/02/2019,,,,,93,126,179,222,21,29,41,52,,,"CCGT D1_Integrated Programme Schedule;OEM (Engineering & Deliverables);BOILER AREA;CONCRETE STRUCTURE FOR SCR-SKID UVM"
1.5.9.1.1-1,SI1HSJ3-25,"DESIGN, MANUFACTURING, SHOP TEST SCR UNIT",7112,"CCGTD1_IPS",TT_Task,"61607",-,-,-,100,TK_Complete,15/05/2017,15/04/2017,08/03/2018,15/06/2018,"","","SI1HSJ3-85 FS,SI1HSJ3-80 FS","SI1HSJ3-85,SI1HSJ3-80",93,126,136,187,21,29,31,43,5,,"CCGT D1_Integrated Programme Schedule;OEM (Engineering & Deliverables);BOILER AREA;CONCRETE STRUCTURE FOR SCR-SKID UVM;SCR Dosing & Unloading (incl. Tank)",0,2,0.0,0.0012207528,0.0,297,0.0,0.0000812387,0.0,0.0061538462,0.0,0.0031331593,0.0,0.6659192825,0.0,0.0
1.5.9.1.1-2,SI1HSJ4-44,"TRANSPORT SCR UNIT",7112,"CCGTD1_IPS",TT_Task,"61607",-,-,-,100,TK_Complete,05/09/2018,18/07/2018,03/11/2018,26/10/2018,"SI1HSJ3-80 FS","SI1HSJ3-80","SI1HSJ4-40 FS","SI1HSJ4-40",162,191,170,206,37,44,39,48,36,,"CCGT D1_Integrated Programme Schedule;OEM (Engineering & Deliverables);BOILER AREA;CONCRETE STRUCTURE FOR SCR-SKID UVM;SCR Dosing & Unloading (incl. Tank)",1,1,0.0000000828,0.0002034588,0.0004069176,59,0.0,0.0001503957,0.0068493151,0.0030769231,0.000125,0.0005221932,0.0012870013,0.1322869955,0.0,0.0283369572
1.5.9.1.1-3,SI1HSJ4-40,"(OTD-OS) ON SITE SCR UNIT",7112,"CCGTD1_IPS",TT_FinMile,"61607",-,-,-,100,TK_Complete,03/11/2018,26/10/2018,03/11/2018,26/10/2018,"SI1HSJ4-44 FS","SI1HSJ4-44","","",170,206,170,206,39,48,39,48,38,,"CCGT D1_Integrated Programme Schedule;OEM (Engineering & Deliverables);BOILER AREA;CONCRETE STRUCTURE FOR SCR-SKID UVM;SCR Dosing & Unloading (incl. Tank)",1,0,0.0,0.0,0.0006103764,0,1.0,0.0000812387,0.0068493151,0.0,0.0,0.0,0.0019305019,0.0,1.0,0.0
1.5.9.1.1-4,SI1HSJ3-80,"(RFS) READY FOR SHIPMENT SCR UNIT",7112,"CCGTD1_IPS",TT_FinMile,"61607",-,-,-,100,TK_Complete,04/09/2018,16/06/2018,04/09/2018,16/06/2018,"SI1HSJ3-25 FS","SI1HSJ3-25","SI1HSJ4-44 FS","SI1HSJ4-44",161,187,161,187,37,43,37,43,36,,"CCGT D1_Integrated Programme Schedule;OEM (Engineering & Deliverables);BOILER AREA;CONCRETE STRUCTURE FOR SCR-SKID UVM;SCR Dosing & Unloading (incl. Tank)",1,1,0.0000000828,0.0004069176,0.0002034588,0,1.0,0.0000812387,0.0068493151,0.0030769231,0.000125,0.0010443864,0.0006435006,0.0,1.0,0.0
1.5.9.1.1-5,SI1HSJ3-85,"(RFS) READY FOR SHIPMENT SCR CATALYST",7112,"CCGTD1_IPS",TT_FinMile,"61607",-,-,-,100,TK_Complete,04/11/2018,30/08/2018,04/11/2018,30/08/2018,"SI1HSJ3-25 FS","SI1HSJ3-25","SI1HSJ4-46 FS","SI1HSJ4-46",170,197,170,197,39,46,39,46,38,,"CCGT D1_Integrated Programme Schedule;OEM (Engineering & Deliverables);BOILER AREA;CONCRETE STRUCTURE FOR SCR-SKID UVM;SCR Dosing & Unloading (incl. Tank)",1,1,0.0000000828,0.0004069176,0.0002034588,0,1.0,0.0000812387,0.0068493151,0.0030769231,0.000125,0.0010443864,0.0006435006,0.0,1.0,0.0
1.5.9.1.1-6,SI1HSJ4-46,"TRANSPORT SCR CATALYST",7112,"CCGTD1_IPS",TT_Task,"61607",-,-,-,100,TK_Complete,05/11/2018,27/01/2019,03/01/2019,21/02/2019,"SI1HSJ3-85 FS","SI1HSJ3-85","SI1HSJ4-48 FS","SI1HSJ4-48",170,219,179,222,39,51,41,52,38,,"CCGT D1_Integrated Programme Schedule;OEM (Engineering & Deliverables);BOILER AREA;CONCRETE STRUCTURE FOR SCR-SKID UVM;SCR Dosing & Unloading (incl. Tank)",1,1,0.0000000828,0.0002034588,0.0004069176,59,1.0,0.0001503957,0.0068493151,0.0030769231,0.000125,0.0005221932,0.0012870013,0.1322869955,1.0,0.0283369572
1.5.9.1.1-7,SI1HSJ4-48,"(OTD-OS) ON SITE SCR CATALYST",7112,"CCGTD1_IPS",TT_FinMile,"61607",-,-,-,100,TK_Complete,03/01/2019,21/02/2019,03/01/2019,21/02/2019,"SI1HSJ4-46 FS","SI1HSJ4-46","","",179,222,179,222,41,52,41,52,43,,"CCGT D1_Integrated Programme Schedule;OEM (Engineering & Deliverables);BOILER AREA;CONCRETE STRUCTURE FOR SCR-SKID UVM;SCR Dosing & Unloading (incl. Tank)",1,0,0.0,0.0,0.0006103764,0,1.0,0.0000812387,0.0068493151,0.0,0.0,0.0,0.0019305019,0.0,1.0,0.0
1.5.9.1.2,61606,"Concrete / Formwork / Reinforcement UVM",7112,"CCGTD1_IPS",WBS,"61605",,,,100,Complete,01/05/2017,29/04/2017,16/06/2017,30/06/2017,,,,,91,128,98,137,21,29,22,31,,,"CCGT D1_Integrated Programme Schedule;OEM (Engineering & Deliverables);BOILER AREA;CONCRETE STRUCTURE FOR SCR-SKID UVM"
1.5.9.1.2-1,SI1UVM2-45,"PREPARATION BASIC BUILDING DWGS  SCR UNIT",7112,"CCGTD1_IPS",TT_Task,"61606",-,-,-,100,TK_Complete,01/05/2017,29/04/2017,04/06/2017,30/06/2017,"SI1UVM2-60 FF","SI1UVM2-60","SI1UVM2-50 SS","SI1UVM2-50",91,128,96,137,21,29,22,31,4,,"CCGT D1_Integrated Programme Schedule;OEM (Engineering & Deliverables);BOILER AREA;CONCRETE STRUCTURE FOR SCR-SKID UVM;Concrete / Formwork / Reinforcement UVM",1,1,0.0000000414,0.0002034588,0.0002034588,34,0.0,0.0001503957,0.0068493151,0.0030769231,0.0000625,0.0005221932,0.0006435006,0.0762331839,0.0,0.0283369572
1.5.9.1.2-2,SI1UVM2-50,"PREPARATION FOUNDATION GROUNDING DWGS  SCR UNIT",7112,"CCGTD1_IPS",TT_Task,"61606",-,-,-,100,TK_Complete,01/05/2017,29/04/2017,14/05/2017,12/05/2017,"SI1UVM2-45 SS","SI1UVM2-45","","",91,128,93,130,21,29,21,30,4,,"CCGT D1_Integrated Programme Schedule;OEM (Engineering & Deliverables);BOILER AREA;CONCRETE STRUCTURE FOR SCR-SKID UVM;Concrete / Formwork / Reinforcement UVM",1,0,0.0,0.0,0.0004069176,13,1.0,0.000209244,0.0068493151,0.0,0.0,0.0,0.0012870013,0.0291479821,1.0,0.0524499399
1.5.9.1.2-3,SI1UVM2-60,"(MS3) CONCRETE STRUCTURE FINAL DIMENSIONS LOADS AVAILABLE SCR UNIT",7112,"CCGTD1_IPS",TT_FinMile,"61606",-,-,-,100,TK_Complete,16/06/2017,12/05/2017,16/06/2017,12/05/2017,"","","SI1UVM2-45 FF","SI1UVM2-45",98,130,98,130,22,30,22,30,7,,"CCGT D1_Integrated Programme Schedule;OEM (Engineering & Deliverables);BOILER AREA;CONCRETE STRUCTURE FOR SCR-SKID UVM;Concrete / Formwork / Reinforcement UVM",0,1,0.0,0.0004069176,0.0,0,1.0,0.0000812387,0.0,0.0030769231,0.0,0.0010443864,0.0,0.0,1.0,0.0
1.5.9.2,61603,"STRUCTURE FOR IGNITION GAS SYSTEM",7112,"CCGTD1_IPS",WBS,"61565",,,,100,Complete,02/11/2017,25/09/2017,06/12/2017,18/10/2017,,,,,118,149,123,152,27,34,28,35,,,"CCGT D1_Integrated Programme Schedule;OEM (Engineering & Deliverables);BOILER AREA"
1.5.9.2.1,61604,"Concrete / Formwork / Reinforcement UTX",7112,"CCGTD1_IPS",WBS,"61603",,,,100,Complete,02/11/2017,25/09/2017,06/12/2017,18/10/2017,,,,,118,149,123,152,27,34,28,35,,,"CCGT D1_Integrated Programme Schedule;OEM (Engineering & Deliverables);BOILER AREA;STRUCTURE FOR IGNITION GAS SYSTEM"
1.5.9.2.1-1,SI1UTX2-60,"(MS3) CONCRETE STRUCTURE FINAL DIMENSIONS LOADS AVAILABLE UTX",7112,"CCGTD1_IPS",TT_Mile,"61604",-,-,-,100,TK_Complete,16/11/2017,30/09/2017,16/11/2017,30/09/2017,"","","SI1UTX2-45 SF","SI1UTX2-45",120,150,120,150,28,35,28,35,14,,"CCGT D1_Integrated Programme Schedule;OEM (Engineering & Deliverables);BOILER AREA;STRUCTURE FOR IGNITION GAS SYSTEM;Concrete / Formwork / Reinforcement UTX",0,1,0.0,0.0002034588,0.0,0,1.0,0.0000812387,0.0,0.0030769231,0.0,0.0005221932,0.0,0.0,1.0,0.0
1.5.9.2.1-2,SI1UTX2-45,"PREPARATION BASIC BUILDING DWGS  UTX",7112,"CCGTD1_IPS",TT_Task,"61604",-,-,-,100,TK_Complete,02/11/2017,25/09/2017,06/12/2017,18/10/2017,"SI1UTX2-60 SF,SI-3412-20 FS","SI1UTX2-60,SI-3412-20","","",118,149,123,152,27,34,28,35,13,,"CCGT D1_Integrated Programme Schedule;OEM (Engineering & Deliverables);BOILER AREA;STRUCTURE FOR IGNITION GAS SYSTEM;Concrete / Formwork / Reinforcement UTX",2,0,0.0,0.0,0.0006103764,34,1.0,0.0001538896,0.0136986301,0.0,0.0,0.0,0.0019305019,0.0762331839,1.0,0.029768542
1.5.9.3,61601,"SAMPLING STATION",7112,"CCGTD1_IPS",WBS,"61565",,,,100,Complete,26/08/2017,25/08/2017,29/09/2017,24/09/2017,,,,,108,145,113,149,25,33,26,34,,,"CCGT D1_Integrated Programme Schedule;OEM (Engineering & Deliverables);BOILER AREA"
1.5.9.3.1,61602,"Concrete / Formwork / Reinforcement UHX",7112,"CCGTD1_IPS",WBS,"61601",,,,100,Complete,26/08/2017,25/08/2017,29/09/2017,24/09/2017,,,,,108,145,113,149,25,33,26,34,,,"CCGT D1_Integrated Programme Schedule;OEM (Engineering & Deliverables);BOILER AREA;SAMPLING STATION"
1.5.9.3.1-1,SI1UHX2-45,"PREPARATION BASIC BUILDING DWGS  UHX",7112,"CCGTD1_IPS",TT_Task,"61602",-,-,-,100,TK_Complete,26/08/2017,25/08/2017,29/09/2017,24/09/2017,"SI-3412-20 FS,SI1UHX2-60 FF","SI-3412-20,SI1UHX2-60","","",108,145,113,149,25,33,26,34,10,,"CCGT D1_Integrated Programme Schedule;OEM (Engineering & Deliverables);BOILER AREA;SAMPLING STATION;Concrete / Formwork / Reinforcement UHX",2,0,0.0,0.0,0.0006103764,34,1.0,0.0001538896,0.0136986301,0.0,0.0,0.0,0.0019305019,0.0762331839,1.0,0.029768542
1.5.9.3.1-2,SI1UHX2-60,"(MS3) CONCRETE STRUCTURE FINAL DIMENSIONS LOADS AVAILABLE UHX",7112,"CCGTD1_IPS",TT_FinMile,"61602",-,-,-,100,TK_Complete,25/09/2017,30/08/2017,25/09/2017,30/08/2017,"","","SI1UHX2-45 FF","SI1UHX2-45",112,145,112,145,26,34,26,34,11,,"CCGT D1_Integrated Programme Schedule;OEM (Engineering & Deliverables);BOILER AREA;SAMPLING STATION;Concrete / Formwork / Reinforcement UHX",0,1,0.0,0.0002034588,0.0,0,1.0,0.0000812387,0.0,0.0030769231,0.0,0.0005221932,0.0,0.0,1.0,0.0
1.5.9.4,61597,"PIPE AND CABLE BRIDGE BRIDGE STRUCTURE  UMY",7112,"CCGTD1_IPS",WBS,"61565",,,,100,Complete,31/05/2017,12/05/2017,05/11/2018,05/11/2018,,,,,96,130,170,207,22,30,39,48,,,"CCGT D1_Integrated Programme Schedule;OEM (Engineering & Deliverables);BOILER AREA"
1.5.9.4.1,61600,"Cable Support System BZP",7112,"CCGTD1_IPS",WBS,"61597",,,,100,Complete,23/10/2017,22/09/2017,17/12/2017,16/11/2017,,,,,116,149,124,156,27,34,29,36,,,"CCGT D1_Integrated Programme Schedule;OEM (Engineering & Deliverables);BOILER AREA;PIPE AND CABLE BRIDGE BRIDGE STRUCTURE  UMY"
1.5.9.4.1-1,SI1BZP2D30,"DETAIL DESIGN CABLE SUPPORT SYSTEM UMY",7112,"CCGTD1_IPS",TT_Task,"61600",-,-,-,100,TK_Complete,23/10/2017,22/09/2017,17/12/2017,16/11/2017,"SI1UMY2B70 FF","SI1UMY2B70","","",116,149,124,156,27,34,29,36,13,,"CCGT D1_Integrated Programme Schedule;OEM (Engineering & Deliverables);BOILER AREA;PIPE AND CABLE BRIDGE BRIDGE STRUCTURE  UMY;Cable Support System BZP",1,0,0.0,0.0,0.0004069176,55,1.0,0.0001311699,0.0068493151,0.0,0.0,0.0,0.0012870013,0.1233183857,1.0,0.0204591964
1.5.9.4.2,61599,"Main Piperack Module UMY00Y",7112,"CCGTD1_IPS",WBS,"61597",,,,100,Complete,31/05/2017,12/05/2017,05/11/2018,05/11/2018,,,,,96,130,170,207,22,30,39,48,,,"CCGT D1_Integrated Programme Schedule;OEM (Engineering & Deliverables);BOILER AREA;PIPE AND CABLE BRIDGE BRIDGE STRUCTURE  UMY"
1.5.9.4.2-1,SI1UMY4B30,"TRANSPORT STEEL STRUCTURE UMY00Y",7112,"CCGTD1_IPS",TT_Task,"61599",-,-,-,100,TK_Complete,22/10/2018,17/10/2018,05/11/2018,05/11/2018,"SI1UMY3-29 FS","SI1UMY3-29","SI1UMY4-44 FS","SI1UMY4-44",168,204,170,207,39,47,39,48,37,,"CCGT D1_Integrated Programme Schedule;OEM (Engineering & Deliverables);BOILER AREA;PIPE AND CABLE BRIDGE BRIDGE STRUCTURE  UMY;Main Piperack Module UMY00Y",1,1,0.0000004554,0.0002034588,0.0022380468,14,0.6,0.000280272,0.0068493151,0.0030769231,0.0006875,0.0005221932,0.0070785071,0.0313901345,0.6,0.0815535165
1.5.9.4.2-2,SI1UMY2B60,"(MS3) STEEL STRUCTURE, FINAL DIMENSIONS AND LOADS AVAILABLE UMY00Y",7112,"CCGTD1_IPS",TT_FinMile,"61599",-,-,-,100,TK_Complete,31/05/2017,12/05/2017,31/05/2017,12/05/2017,"","","SI1UMY2B70 FS","SI1UMY2B70",96,130,96,130,22,30,22,30,6,,"CCGT D1_Integrated Programme Schedule;OEM (Engineering & Deliverables);BOILER AREA;PIPE AND CABLE BRIDGE BRIDGE STRUCTURE  UMY;Main Piperack Module UMY00Y",0,1,0.0,0.0012207528,0.0,0,1.0,0.0000812387,0.0,0.0030769231,0.0,0.0031331593,0.0,0.0,1.0,0.0
1.5.9.4.2-3,SI1UMY2B70,"DETAIL DESIGN / CHECKER STEEL STRUCTURE UMY00Y",7112,"CCGTD1_IPS",TT_Task,"61599",-,-,-,100,TK_Complete,02/06/2017,13/05/2017,25/11/2017,25/12/2017,"SI1UMY2B60 FS","SI1UMY2B60","SI1BZP2D30 FF,SI1UMY3B25 FS","SI1BZP2D30,SI1UMY3B25",96,130,121,162,22,30,28,37,6,,"CCGT D1_Integrated Programme Schedule;OEM (Engineering & Deliverables);BOILER AREA;PIPE AND CABLE BRIDGE BRIDGE STRUCTURE  UMY;Main Piperack Module UMY00Y",1,2,0.000000207,0.001017294,0.0002034588,176,0.0,0.0001503957,0.0068493151,0.0061538462,0.0003125,0.0026109661,0.0006435006,0.3946188341,0.0,0.0283369572
1.5.9.4.2-4,SI1UMY3B25,"DELIVERY OF SKID FRAME STEEL, PIPING MATERIAL UMY00Y MODULE",7112,"CCGTD1_IPS",TT_Task,"61599",-,-,-,100,TK_Complete,05/02/2018,26/12/2017,02/05/2018,23/05/2018,"SI---P2J85 FS,SI1UMY2B70 FS,SI-U--2B85 FS","SI---P2J85,SI1UMY2B70,SI-U--2B85","SI1UMY3-29 SS","SI1UMY3-29",131,162,144,183,30,37,33,42,18,,"CCGT D1_Integrated Programme Schedule;OEM (Engineering & Deliverables);BOILER AREA;PIPE AND CABLE BRIDGE BRIDGE STRUCTURE  UMY;Main Piperack Module UMY00Y",3,1,0.0000011179,0.0006103764,0.0018311292,86,0.0,0.0001791449,0.0205479452,0.0030769231,0.0016875,0.0015665796,0.0057915058,0.1928251121,0.0,0.0401168605
1.5.9.4.2-5,SI1UMY3-29,"MANUFACTURING UMY00Y MODULE",7112,"CCGTD1_IPS",TT_Task,"61599",-,-,-,100,TK_Complete,01/08/2018,26/04/2018,06/10/2018,06/10/2018,"SI1UMY3B25 SS","SI1UMY3B25","SI1UMY4B30 FS","SI1UMY4B30",157,179,166,203,36,41,38,47,34,,"CCGT D1_Integrated Programme Schedule;OEM (Engineering & Deliverables);BOILER AREA;PIPE AND CABLE BRIDGE BRIDGE STRUCTURE  UMY;Main Piperack Module UMY00Y",1,1,0.0000008281,0.0004069176,0.002034588,66,0.0,0.0002337433,0.0068493151,0.0030769231,0.00125,0.0010443864,0.0064350064,0.1479820628,0.0,0.0624884687
1.5.9.4.2-6,SI1UMY4-44,"(OTD-OS) ON SITE UMY00Y MODULE",7112,"CCGTD1_IPS",TT_FinMile,"61599",-,-,-,100,TK_Complete,05/11/2018,05/11/2018,05/11/2018,05/11/2018,"SI1UMY4B30 FS","SI1UMY4B30","","",170,207,170,207,39,48,39,48,38,,"CCGT D1_Integrated Programme Schedule;OEM (Engineering & Deliverables);BOILER AREA;PIPE AND CABLE BRIDGE BRIDGE STRUCTURE  UMY;Main Piperack Module UMY00Y",1,0,0.0,0.0,0.0024415056,0,1.0,0.0000812387,0.0068493151,0.0,0.0,0.0,0.0077220077,0.0,1.0,0.0
1.5.9.4.3,61598,"Concrete / Formwork / Reinforcement UMY",7112,"CCGTD1_IPS",WBS,"61597",,,,100,Complete,25/06/2017,02/06/2017,27/05/2018,15/09/2018,,,,,99,133,147,200,23,31,34,46,,,"CCGT D1_Integrated Programme Schedule;OEM (Engineering & Deliverables);BOILER AREA;PIPE AND CABLE BRIDGE BRIDGE STRUCTURE  UMY"
1.5.9.4.3-1,SI1UMY3-60,"FABRICATION DESIGN, FABRICATION, TRANSPORT, ON SITE STEEL STRUCTURE UMY",7112,"CCGTD1_IPS",TT_Task,"61598",-,-,-,100,TK_Complete,26/01/2018,29/12/2017,27/05/2018,15/09/2018,"SI1UMY2-60 FS","SI1UMY2-60","","",130,163,147,200,30,38,34,46,16,,"CCGT D1_Integrated Programme Schedule;OEM (Engineering & Deliverables);BOILER AREA;PIPE AND CABLE BRIDGE BRIDGE STRUCTURE  UMY;Concrete / Formwork / Reinforcement UMY",1,0,0.0,0.0,0.0004069176,121,0.0,0.0001352258,0.0068493151,0.0,0.0,0.0,0.0012870013,0.2713004484,0.0,0.0221211085
1.5.9.4.3-2,SI1UMY2-60,"(MS3) CONCRETE STRUCTURE FINAL DIMENSIONS LOADS AVAILABLE UMY",7112,"CCGTD1_IPS",TT_FinMile,"61598",-,-,-,100,TK_Complete,25/06/2017,15/06/2017,25/06/2017,15/06/2017,"SI----2C00 FS","SI----2C00","SI1UMY2-45 FF,SI1UMY3-60 FS","SI1UMY2-45,SI1UMY3-60",99,134,99,134,23,31,23,31,7,,"CCGT D1_Integrated Programme Schedule;OEM (Engineering & Deliverables);BOILER AREA;PIPE AND CABLE BRIDGE BRIDGE STRUCTURE  UMY;Concrete / Formwork / Reinforcement UMY",1,2,0.0000000828,0.0004069176,0.0002034588,0,1.0,0.0000812387,0.0068493151,0.0061538462,0.000125,0.0010443864,0.0006435006,0.0,1.0,0.0
1.5.9.4.3-3,SI1UMY2-45,"PREPARATION BASIC BUILDING DWGS  UMY",7112,"CCGTD1_IPS",TT_Task,"61598",-,-,-,100,TK_Complete,26/06/2017,02/06/2017,30/07/2017,21/06/2017,"SI-3412-20 FS,SI1UMY2-60 FF","SI-3412-20,SI1UMY2-60","","",99,133,104,135,23,31,24,31,8,,"CCGT D1_Integrated Programme Schedule;OEM (Engineering & Deliverables);BOILER AREA;PIPE AND CABLE BRIDGE BRIDGE STRUCTURE  UMY;Concrete / Formwork / Reinforcement UMY",2,0,0.0,0.0,0.0008138352,34,1.0,0.0000999025,0.0136986301,0.0,0.0,0.0,0.0025740026,0.0762331839,1.0,0.0076474334
1.5.9.5,61587,"FEEDWATER PUMP STRUCTURE",7112,"CCGTD1_IPS",WBS,"61565",,,,100,Complete,26/11/2016,03/11/2016,22/11/2018,06/10/2018,,,,,69,102,173,203,16,24,40,47,,,"CCGT D1_Integrated Programme Schedule;OEM (Engineering & Deliverables);BOILER AREA"
1.5.9.5.1,61596,"Sampling Systems QU",7112,"CCGTD1_IPS",WBS,"61587",,,,100,Complete,05/06/2017,11/05/2017,22/11/2018,06/10/2018,,,,,96,129,173,203,22,30,40,47,,,"CCGT D1_Integrated Programme Schedule;OEM (Engineering & Deliverables);BOILER AREA;FEEDWATER PUMP STRUCTURE"
1.5.9.5.1-1,SI1QU-3-25,"DESIGN, MANUFACTURING, SHOP TEST SAMPLING CONTAINER QU",7112,"CCGTD1_IPS",TT_Task,"61596",-,-,-,100,TK_Complete,05/06/2017,11/05/2017,21/11/2017,06/06/2018,"","","SI1QU-3-80 FS","SI1QU-3-80",96,129,120,185,22,30,28,43,7,,"CCGT D1_Integrated Programme Schedule;OEM (Engineering & Deliverables);BOILER AREA;FEEDWATER PUMP STRUCTURE;Sampling Systems QU",0,1,0.0,0.0006103764,0.0,169,0.0,0.0000812387,0.0,0.0030769231,0.0,0.0015665796,0.0,0.3789237668,0.0,0.0
1.5.9.5.1-2,SI1QU-4-25,"TRANSPORT SAMPLING CONTAINER QU",7112,"CCGTD1_IPS",TT_Task,"61596",-,-,-,100,TK_Complete,05/10/2018,02/09/2018,22/11/2018,06/10/2018,"SI1QU-3-80 FS","SI1QU-3-80","SI1QU-4-42 FS","SI1QU-4-42",166,198,173,203,38,46,40,47,37,,"CCGT D1_Integrated Programme Schedule;OEM (Engineering & Deliverables);BOILER AREA;FEEDWATER PUMP STRUCTURE;Sampling Systems QU",1,1,0.0000000828,0.0002034588,0.0004069176,48,1.0,0.0001503957,0.0068493151,0.0030769231,0.000125,0.0005221932,0.0012870013,0.1076233184,1.0,0.0283369572
1.5.9.5.1-3,SI1QU-4-42,"(OTD-OS) ON SITE SAMPLING CONTAINER QU",7112,"CCGTD1_IPS",TT_FinMile,"61596",-,-,-,100,TK_Complete,22/11/2018,06/10/2018,22/11/2018,06/10/2018,"SI1QU-4-25 FS","SI1QU-4-25","","",173,203,173,203,40,47,40,47,38,,"CCGT D1_Integrated Programme Schedule;OEM (Engineering & Deliverables);BOILER AREA;FEEDWATER PUMP STRUCTURE;Sampling Systems QU",1,0,0.0,0.0,0.0006103764,0,1.0,0.0000812387,0.0068493151,0.0,0.0,0.0,0.0019305019,0.0,1.0,0.0
1.5.9.5.1-4,SI1QU-3-80,"(RFS) READY FOR SHIPMENT SAMPLING CONTAINER QU",7112,"CCGTD1_IPS",TT_FinMile,"61596",-,-,-,100,TK_Complete,04/10/2018,31/08/2018,04/10/2018,31/08/2018,"SI1QU-3-25 FS","SI1QU-3-25","SI1QU-4-25 FS","SI1QU-4-25",166,198,166,198,38,46,38,46,37,,"CCGT D1_Integrated Programme Schedule;OEM (Engineering & Deliverables);BOILER AREA;FEEDWATER PUMP STRUCTURE;Sampling Systems QU",1,1,0.0000000828,0.0004069176,0.0002034588,0,1.0,0.0000812387,0.0068493151,0.0030769231,0.000125,0.0010443864,0.0006435006,0.0,1.0,0.0
1.5.9.5.2,61595,"Central Chemicals Supply QC",7112,"CCGTD1_IPS",WBS,"61587",,,,100,Complete,04/06/2017,11/05/2017,12/10/2018,07/07/2018,,,,,96,129,167,190,22,30,39,44,,,"CCGT D1_Integrated Programme Schedule;OEM (Engineering & Deliverables);BOILER AREA;FEEDWATER PUMP STRUCTURE"
1.5.9.5.2-1,SI1QC-3-25,"DESIGN, MANUFACTURING, SHOP TEST DOSING CONTAINER QC",7112,"CCGTD1_IPS",TT_Task,"61595",-,-,-,100,TK_Complete,04/06/2017,11/05/2017,11/10/2017,17/04/2018,"","","SI1QC-3-80 FS","SI1QC-3-80",96,129,115,178,22,30,26,41,7,,"CCGT D1_Integrated Programme Schedule;OEM (Engineering & Deliverables);BOILER AREA;FEEDWATER PUMP STRUCTURE;Central Chemicals Supply QC",0,1,0.0,0.0006103764,0.0,129,0.0,0.0000812387,0.0,0.0030769231,0.0,0.0015665796,0.0,0.2892376682,0.0,0.0
1.5.9.5.2-2,SI1QC-4-25,"TRANSPORT DOSING CONTAINER QC",7112,"CCGTD1_IPS",TT_Task,"61595",-,-,-,100,TK_Complete,25/08/2018,25/05/2018,12/10/2018,07/07/2018,"SI1QC-3-80 FS","SI1QC-3-80","SI1QC-4-42 FS","SI1QC-4-42",160,184,167,190,37,42,39,44,35,,"CCGT D1_Integrated Programme Schedule;OEM (Engineering & Deliverables);BOILER AREA;FEEDWATER PUMP STRUCTURE;Central Chemicals Supply QC",1,1,0.0000000828,0.0002034588,0.0004069176,48,1.0,0.0001503957,0.0068493151,0.0030769231,0.000125,0.0005221932,0.0012870013,0.1076233184,1.0,0.0283369572
1.5.9.5.2-3,SI1QC-4-42,"(OTD-OS) ON SITE DOSING CONTAINER QC",7112,"CCGTD1_IPS",TT_FinMile,"61595",-,-,-,100,TK_Complete,12/10/2018,07/07/2018,12/10/2018,07/07/2018,"SI1QC-4-25 FS","SI1QC-4-25","","",167,190,167,190,39,44,39,44,37,,"CCGT D1_Integrated Programme Schedule;OEM (Engineering & Deliverables);BOILER AREA;FEEDWATER PUMP STRUCTURE;Central Chemicals Supply QC",1,0,0.0,0.0,0.0006103764,0,1.0,0.0000812387,0.0068493151,0.0,0.0,0.0,0.0019305019,0.0,1.0,0.0
1.5.9.5.2-4,SI1QC-3-80,"(RFS) READY FOR SHIPMENT DOSING CONTAINER QC",7112,"CCGTD1_IPS",TT_FinMile,"61595",-,-,-,100,TK_Complete,24/08/2018,18/05/2018,24/08/2018,18/05/2018,"SI1QC-3-25 FS","SI1QC-3-25","SI1QC-4-25 FS","SI1QC-4-25",160,183,160,183,37,42,37,42,35,,"CCGT D1_Integrated Programme Schedule;OEM (Engineering & Deliverables);BOILER AREA;FEEDWATER PUMP STRUCTURE;Central Chemicals Supply QC",1,1,0.0000000828,0.0004069176,0.0002034588,0,1.0,0.0000812387,0.0068493151,0.0030769231,0.000125,0.0010443864,0.0006435006,0.0,1.0,0.0
1.5.9.5.3,61594,"Feed Water Pump Module LAC10Y",7112,"CCGTD1_IPS",WBS,"61587",,,,100,Complete,16/03/2017,14/03/2017,05/10/2018,25/06/2018,,,,,85,121,166,188,19,28,38,43,,,"CCGT D1_Integrated Programme Schedule;OEM (Engineering & Deliverables);BOILER AREA;FEEDWATER PUMP STRUCTURE"
1.5.9.5.3-1,SI1LAC3-25,"MANUFACTURING LAC10Y MODULE",7112,"CCGTD1_IPS",TT_Task,"61594",-,-,-,100,TK_Complete,17/12/2017,16/11/2017,12/05/2018,31/05/2018,"SI1LAC3-10 FS,SI1LAC3-20 FF","SI1LAC3-10,SI1LAC3-20","SI1LAC4-25 FS","SI1LAC4-25",124,156,145,184,29,36,33,43,16,,"CCGT D1_Integrated Programme Schedule;OEM (Engineering & Deliverables);BOILER AREA;FEEDWATER PUMP STRUCTURE;Feed Water Pump Module LAC10Y",2,1,0.0000012421,0.0004069176,0.003051882,146,0.0,0.0003540935,0.0136986301,0.0030769231,0.001875,0.0010443864,0.0096525097,0.3273542601,0.0,0.1118017193
1.5.9.5.3-2,SI1LAC4-25,"TRANSPORT LAC10Y MODULE",7112,"CCGTD1_IPS",TT_Task,"61594",-,-,-,100,TK_Complete,20/09/2018,18/06/2018,05/10/2018,25/06/2018,"SI1LAC3-25 FS","SI1LAC3-25","SI1LAC4-42 FS","SI1LAC4-42",164,187,166,188,38,43,38,43,37,,"CCGT D1_Integrated Programme Schedule;OEM (Engineering & Deliverables);BOILER AREA;FEEDWATER PUMP STRUCTURE;Feed Water Pump Module LAC10Y",1,1,0.0000006625,0.0002034588,0.0032553408,15,1.0,0.0003827605,0.0068493151,0.0030769231,0.001,0.0005221932,0.0102960103,0.033632287,1.0,0.123547977
1.5.9.5.3-3,SI1LAC4-42,"(OTD-OS) ON SITE LAC10Y MODULE",7112,"CCGTD1_IPS",TT_FinMile,"61594",-,-,-,100,TK_Complete,05/10/2018,25/06/2018,05/10/2018,25/06/2018,"SI1LAC4-25 FS","SI1LAC4-25","","",166,188,166,188,38,43,38,43,37,,"CCGT D1_Integrated Programme Schedule;OEM (Engineering & Deliverables);BOILER AREA;FEEDWATER PUMP STRUCTURE;Feed Water Pump Module LAC10Y",1,0,0.0,0.0,0.0034587996,0,1.0,0.0000812387,0.0068493151,0.0,0.0,0.0,0.0109395109,0.0,1.0,0.0
1.5.9.5.3-4,SI1LAC3-10,"DELIVERY OF SKID FRAME STEEL, PIPING MATERIAL LAC10Y MODULE",7112,"CCGTD1_IPS",TT_Task,"61594",-,-,-,100,TK_Complete,27/09/2017,27/08/2017,20/12/2017,19/11/2017,"SI1LAC2-10 FS,SI---P2J85 FS","SI1LAC2-10,SI---P2J85","SI1LAC3-25 FS","SI1LAC3-25",113,145,125,157,26,33,29,36,12,,"CCGT D1_Integrated Programme Schedule;OEM (Engineering & Deliverables);BOILER AREA;FEEDWATER PUMP STRUCTURE;Feed Water Pump Module LAC10Y",2,1,0.0000012421,0.0006103764,0.002034588,84,1.0,0.0002392535,0.0136986301,0.0030769231,0.001875,0.0015665796,0.0064350064,0.1883408072,1.0,0.0647462607
1.5.9.5.3-5,SI1LAC3-20,"DELIVERY OF COMPONENTS LAC10Y MODULE",7112,"CCGTD1_IPS",TT_FinMile,"61594",-,-,-,100,TK_Complete,05/03/2018,02/02/2018,05/03/2018,02/02/2018,"SI1LAC4B25 FS","SI1LAC4B25","SI1LAC3-25 FF","SI1LAC3-25",135,168,135,168,31,39,31,39,21,,"CCGT D1_Integrated Programme Schedule;OEM (Engineering & Deliverables);BOILER AREA;FEEDWATER PUMP STRUCTURE;Feed Water Pump Module LAC10Y",1,1,0.0000003726,0.0006103764,0.0016276704,0,1.0,0.0000812387,0.0068493151,0.0030769231,0.0005625,0.0015665796,0.0051480051,0.0,1.0,0.0
1.5.9.5.3-6,SI1LAC2-10,"DETAIL DESIGN LAC10Y MODULE",7112,"CCGTD1_IPS",TT_Task,"61594",-,-,-,100,TK_Complete,16/03/2017,14/03/2017,28/08/2017,26/08/2017,"SI1LAC2B65 FS,SI1LAC2B85 FS","SI1LAC2B65,SI1LAC2B85","SI1LAC3-10 FS","SI1LAC3-10",85,121,108,145,19,28,25,33,3,,"CCGT D1_Integrated Programme Schedule;OEM (Engineering & Deliverables);BOILER AREA;FEEDWATER PUMP STRUCTURE;Feed Water Pump Module LAC10Y",2,1,0.0000008281,0.0008138352,0.0012207528,165,1.0,0.000176154,0.0136986301,0.0030769231,0.00125,0.0020887728,0.0038610039,0.369955157,1.0,0.0388913543
1.5.9.5.4,61593,"Feed Water Pump LAC",7112,"CCGTD1_IPS",WBS,"61587",,,,100,Complete,26/11/2016,03/11/2016,13/01/2018,05/02/2018,,,,,69,102,128,168,16,24,29,39,,,"CCGT D1_Integrated Programme Schedule;OEM (Engineering & Deliverables);BOILER AREA;FEEDWATER PUMP STRUCTURE"
1.5.9.5.4-1,SI1LAC4B25,"TRANSPORT FEEDWATER PUMP LAC",7112,"CCGTD1_IPS",TT_Task,"61593",-,-,-,100,TK_Complete,26/11/2017,12/12/2017,13/01/2018,05/02/2018,"SI1LAC3B80 FS","SI1LAC3B80","SI1LAC3-20 FS","SI1LAC3-20",121,160,128,168,28,37,29,39,14,,"CCGT D1_Integrated Programme Schedule;OEM (Engineering & Deliverables);BOILER AREA;FEEDWATER PUMP STRUCTURE;Feed Water Pump LAC",1,1,0.0000005383,0.0008138352,0.0014242116,48,0.4,0.0001503957,0.0068493151,0.0030769231,0.0008125,0.0020887728,0.0045045045,0.1076233184,0.4,0.0283369572
1.5.9.5.4-2,SI1LAC2B75,"CONTRACT REVIEW, PREPARATION RFQ FEEDWATER PUMP LAC",7112,"CCGTD1_IPS",TT_Task,"61593",-,-,-,100,TK_Complete,26/11/2016,03/11/2016,08/01/2017,16/12/2016,"SI----2C00 FS","SI----2C00","SI1LAC2B80 FS,SI1LAC2B10# SS","SI1LAC2B80,SI1LAC2B10#",69,102,75,109,16,24,17,25,1,,"CCGT D1_Integrated Programme Schedule;OEM (Engineering & Deliverables);BOILER AREA;FEEDWATER PUMP STRUCTURE;Feed Water Pump LAC",1,1,0.0000003312,0.004069176,0.0002034588,43,1.0,0.0000852901,0.0068493151,0.0030769231,0.0005,0.0104438642,0.0006435006,0.0964125561,1.0,0.001660067
1.5.9.5.4-3,SI1LAC2B85,"ORDER PLACED FEEDWATER PUMP LAC",7112,"CCGTD1_IPS",TT_Mile,"61593",-,-,-,100,TK_Complete,17/02/2017,14/02/2017,17/02/2017,14/02/2017,"SI1LAC2B80 FS","SI1LAC2B80","SI1LAC2B65 FS,SI1LAC3B25 FS,SI1LAC2-10 FS,SI1LAC2B60 FS","SI1LAC2B65,SI1LAC3B25,SI1LAC2-10,SI1LAC2B60",81,117,81,117,18,27,18,27,2,,"CCGT D1_Integrated Programme Schedule;OEM (Engineering & Deliverables);BOILER AREA;FEEDWATER PUMP STRUCTURE;Feed Water Pump LAC",1,4,0.0000023393,0.0036622584,0.0008138352,0,1.0,0.0000812387,0.0068493151,0.0123076923,0.00353125,0.0093994778,0.0025740026,0.0,1.0,0.0
1.5.9.5.4-4,SI1LAC2B60,"(DF) FINAL INPUT FOR MS3 FEEDWATER PUMP LAC",7112,"CCGTD1_IPS",TT_FinMile,"61593",-,-,-,100,TK_Complete,31/03/2017,15/03/2017,31/03/2017,15/03/2017,"SI----2C00 FS,SI1LAC2B85 FS","SI----2C00,SI1LAC2B85","SI1ULA2-60 FS,SI1ULA2B60 FS","SI1ULA2-60,SI1ULA2B60",87,121,87,121,20,28,20,28,3,,"CCGT D1_Integrated Programme Schedule;OEM (Engineering & Deliverables);BOILER AREA;FEEDWATER PUMP STRUCTURE;Feed Water Pump LAC",2,2,0.0000011593,0.0014242116,0.001017294,0,1.0,0.0000812387,0.0136986301,0.0061538462,0.00175,0.0036553525,0.0032175032,0.0,1.0,0.0
1.5.9.5.4-5,SI1LAC2B14,"CONFIRMED PUMP CURVES FEEDWATER PUMP LAC",7112,"CCGTD1_IPS",TT_Mile,"61593",-,-,-,100,TK_Complete,26/11/2016,03/11/2016,26/11/2016,03/11/2016,"SI----2C00 SS","SI----2C00","SI-L--2I45 FS","SI-L--2I45",69,102,69,102,16,24,16,24,1,,"CCGT D1_Integrated Programme Schedule;OEM (Engineering & Deliverables);BOILER AREA;FEEDWATER PUMP STRUCTURE;Feed Water Pump LAC",1,1,0.0000000138,0.0002034588,0.0002034588,0,1.0,0.0000812387,0.0068493151,0.0030769231,0.0000208333,0.0005221932,0.0006435006,0.0,1.0,0.0
1.5.9.5.4-6,SI1LAC3B80,"(RFS) READY FOR SHIPMENT FEEDWATER PUMP LAC",7112,"CCGTD1_IPS",TT_FinMile,"61593",-,-,-,100,TK_Complete,25/11/2017,24/11/2017,25/11/2017,24/11/2017,"SI1LAC3B25 FF","SI1LAC3B25","SI1LAC4B25 FS","SI1LAC4B25",121,158,121,158,28,36,28,36,14,,"CCGT D1_Integrated Programme Schedule;OEM (Engineering & Deliverables);BOILER AREA;FEEDWATER PUMP STRUCTURE;Feed Water Pump LAC",1,1,0.0000006211,0.001017294,0.0012207528,0,1.0,0.0000812387,0.0068493151,0.0030769231,0.0009375,0.0026109661,0.0038610039,0.0,1.0,0.0
1.5.9.5.4-7,SI1LAC2B65,"(DF) FINAL INPUT FOR M2 FEEDWATER PUMP LAC",7112,"CCGTD1_IPS",TT_FinMile,"61593",-,-,-,100,TK_Complete,31/03/2017,15/03/2017,31/03/2017,15/03/2017,"SI1LAC2B85 FS","SI1LAC2B85","SI1LAC2-10 FS","SI1LAC2-10",87,121,87,121,20,28,20,28,3,,"CCGT D1_Integrated Programme Schedule;OEM (Engineering & Deliverables);BOILER AREA;FEEDWATER PUMP STRUCTURE;Feed Water Pump LAC",1,1,0.0,0.001017294,0.001017294,0,1.0,0.0000812387,0.0068493151,0.0030769231,0.0,0.0026109661,0.0032175032,0.0,1.0,0.0
1.5.9.5.4-8,SI1LAC3B25,"DETAIL DESIGN, MANUFACTURING, SHOP TEST FEEDWATER PUMP LAC",7112,"CCGTD1_IPS",TT_Task,"61593",-,-,-,100,TK_Complete,01/03/2017,14/02/2017,04/12/2017,19/11/2017,"SI1LAC2B85 FS","SI1LAC2B85","SI1LAC3B80 FF","SI1LAC3B80",83,117,122,157,19,27,28,36,3,,"CCGT D1_Integrated Programme Schedule;OEM (Engineering & Deliverables);BOILER AREA;FEEDWATER PUMP STRUCTURE;Feed Water Pump LAC",1,1,0.0000006211,0.0012207528,0.001017294,278,1.0,0.0001246375,0.0068493151,0.0030769231,0.0009375,0.0031331593,0.0032175032,0.6233183857,1.0,0.01778256
1.5.9.5.4-9,SI1LAC2B80,"QUOTATION STAGE FEEDWATER PUMP LAC (MPA)",7112,"CCGTD1_IPS",TT_Task,"61593",-,-,-,100,TK_Complete,21/01/2017,17/12/2016,17/02/2017,13/01/2017,"SI-3062-17 FS,SI1LAC2B75 FS","SI-3062-17,SI1LAC2B75","SI1LAC2B85 FS,SI1LAC2B10# FF","SI1LAC2B85,SI1LAC2B10#",77,109,81,113,18,25,18,26,1,,"CCGT D1_Integrated Programme Schedule;OEM (Engineering & Deliverables);BOILER AREA;FEEDWATER PUMP STRUCTURE;Feed Water Pump LAC",2,1,0.0000017183,0.0038657172,0.0006103764,27,1.0,0.0001577172,0.0136986301,0.0030769231,0.00259375,0.009921671,0.0019305019,0.0605381166,1.0,0.0313369105
1.5.9.5.5,61592,"Condensate Recirculating Pump Module LCA50Y",7112,"CCGTD1_IPS",WBS,"61587",,,,100,Complete,01/06/2017,20/05/2017,05/10/2018,25/06/2018,,,,,96,131,166,188,22,30,38,43,,,"CCGT D1_Integrated Programme Schedule;OEM (Engineering & Deliverables);BOILER AREA;FEEDWATER PUMP STRUCTURE"
1.5.9.5.5-1,SI1LCA3-25,"MANUFACTURING LCA50Y MODULE",7112,"CCGTD1_IPS",TT_Task,"61592",-,-,-,100,TK_Complete,05/03/2018,02/02/2018,16/05/2018,31/05/2018,"SI1LCA3-10 FS,SI1LCA3-20 FF","SI1LCA3-10,SI1LCA3-20","SI1LCA4-25 FS","SI1LCA4-25",135,168,146,184,31,39,34,43,21,,"CCGT D1_Integrated Programme Schedule;OEM (Engineering & Deliverables);BOILER AREA;FEEDWATER PUMP STRUCTURE;Condensate Recirculating Pump Module LCA50Y",2,1,0.0000012421,0.0004069176,0.003051882,72,0.0,0.0003574519,0.0136986301,0.0030769231,0.001875,0.0010443864,0.0096525097,0.1614349776,0.0,0.1131778344
1.5.9.5.5-2,SI1LCA2-10,"DETAIL DESIGN LCA50Y MODULE",7112,"CCGTD1_IPS",TT_Task,"61592",-,-,-,100,TK_Complete,01/06/2017,20/05/2017,09/11/2017,28/10/2017,"SI1LCA2B65 FS,SI1LCA2B85 FS","SI1LCA2B65,SI1LCA2B85","SI1LCA3-10 FS","SI1LCA3-10",96,131,119,154,22,30,27,35,6,,"CCGT D1_Integrated Programme Schedule;OEM (Engineering & Deliverables);BOILER AREA;FEEDWATER PUMP STRUCTURE;Condensate Recirculating Pump Module LCA50Y",2,1,0.0000008281,0.0008138352,0.0012207528,161,1.0,0.0001795431,0.0136986301,0.0030769231,0.00125,0.0020887728,0.0038610039,0.3609865471,1.0,0.0402800203
1.5.9.5.5-3,SI1LCA4-25,"TRANSPORT LCA50Y MODULE",7112,"CCGTD1_IPS",TT_Task,"61592",-,-,-,100,TK_Complete,20/09/2018,18/06/2018,05/10/2018,25/06/2018,"SI1LCA3-25 FS","SI1LCA3-25","SI1LCA4-42 FS","SI1LCA4-42",164,187,166,188,38,43,38,43,37,,"CCGT D1_Integrated Programme Schedule;OEM (Engineering & Deliverables);BOILER AREA;FEEDWATER PUMP STRUCTURE;Condensate Recirculating Pump Module LCA50Y",1,1,0.0000006625,0.0002034588,0.0032553408,15,1.0,0.0003856234,0.0068493151,0.0030769231,0.001,0.0005221932,0.0102960103,0.033632287,1.0,0.1247210469
1.5.9.5.5-4,SI1LCA4-42,"(OTD-OS) ON SITE LCA50Y MODULE",7112,"CCGTD1_IPS",TT_FinMile,"61592",-,-,-,100,TK_Complete,05/10/2018,25/06/2018,05/10/2018,25/06/2018,"SI1LCA4-25 FS","SI1LCA4-25","","",166,188,166,188,38,43,38,43,37,,"CCGT D1_Integrated Programme Schedule;OEM (Engineering & Deliverables);BOILER AREA;FEEDWATER PUMP STRUCTURE;Condensate Recirculating Pump Module LCA50Y",1,0,0.0,0.0,0.0034587996,0,1.0,0.0000812387,0.0068493151,0.0,0.0,0.0,0.0109395109,0.0,1.0,0.0
1.5.9.5.5-5,SI1LCA3-10,"DELIVERY OF SKID FRAME STEEL, PIPING MATERIAL LCA50Y MODULE",7112,"CCGTD1_IPS",TT_Task,"61592",-,-,-,100,TK_Complete,29/11/2017,29/10/2017,04/03/2018,01/02/2018,"SI1LCA2-10 FS,SI---P2J85 FS","SI1LCA2-10,SI---P2J85","SI1LCA3-25 FS","SI1LCA3-25",122,154,135,167,28,36,31,39,15,,"CCGT D1_Integrated Programme Schedule;OEM (Engineering & Deliverables);BOILER AREA;FEEDWATER PUMP STRUCTURE;Condensate Recirculating Pump Module LCA50Y",2,1,0.0000012421,0.0006103764,0.002034588,95,1.0,0.0002431969,0.0136986301,0.0030769231,0.001875,0.0015665796,0.0064350064,0.2130044843,1.0,0.0663620604
1.5.9.5.5-6,SI1LCA3-20,"DELIVERY OF COMPONENTS LCA50Y MODULE",7112,"CCGTD1_IPS",TT_FinMile,"61592",-,-,-,100,TK_Complete,22/03/2018,19/02/2018,22/03/2018,19/02/2018,"SI1LCA4B27 FS","SI1LCA4B27","SI1LCA3-25 FF","SI1LCA3-25",138,170,138,170,32,39,32,39,23,,"CCGT D1_Integrated Programme Schedule;OEM (Engineering & Deliverables);BOILER AREA;FEEDWATER PUMP STRUCTURE;Condensate Recirculating Pump Module LCA50Y",1,1,0.0000003726,0.0006103764,0.0016276704,0,1.0,0.0000812387,0.0068493151,0.0030769231,0.0005625,0.0015665796,0.0051480051,0.0,1.0,0.0
1.5.9.5.6,61591,"Condensate Recirculating Pump LCA",7112,"CCGTD1_IPS",WBS,"61587",,,,100,Complete,14/01/2017,15/12/2016,15/03/2018,10/02/2018,,,,,76,108,137,169,17,25,32,39,,,"CCGT D1_Integrated Programme Schedule;OEM (Engineering & Deliverables);BOILER AREA;FEEDWATER PUMP STRUCTURE"
1.5.9.5.6-1,SI1LCA4B27,"TRANSPORT CONDENSATE RECIRCULATING PUMP LCA51",7112,"CCGTD1_IPS",TT_Task,"61591",-,-,-,100,TK_Complete,26/01/2018,02/01/2018,15/03/2018,10/02/2018,"SI1LCA3B80 SS","SI1LCA3B80","SI1LCA3-20 FS","SI1LCA3-20",130,163,137,169,30,38,32,39,18,,"CCGT D1_Integrated Programme Schedule;OEM (Engineering & Deliverables);BOILER AREA;FEEDWATER PUMP STRUCTURE;Condensate Recirculating Pump LCA",1,1,0.0000005383,0.0008138352,0.0014242116,48,1.0,0.0001503957,0.0068493151,0.0030769231,0.0008125,0.0020887728,0.0045045045,0.1076233184,1.0,0.0283369572
1.5.9.5.6-2,SI1LCA2B75,"CONTRACT REVIEW, PREPARATION RFQ CONDENSATE RECIRC.PUMP LCA51",7112,"CCGTD1_IPS",TT_Task,"61591",-,-,-,100,TK_Complete,14/01/2017,15/12/2016,28/02/2017,23/01/2017,"SI----2C00 FS","SI----2C00","SI1LCA2B80 FS","SI1LCA2B80",76,108,82,114,17,25,19,26,1,,"CCGT D1_Integrated Programme Schedule;OEM (Engineering & Deliverables);BOILER AREA;FEEDWATER PUMP STRUCTURE;Condensate Recirculating Pump LCA",1,1,0.0000003312,0.0044760936,0.0002034588,45,1.0,0.0000854786,0.0068493151,0.0030769231,0.0005,0.0114882507,0.0006435006,0.100896861,1.0,0.0017372794
1.5.9.5.6-3,SI1LCA2B14,"CONFIRMED PUMP CURVES COND.RECIRC.PUMP LCA51",7112,"CCGTD1_IPS",TT_Mile,"61591",-,-,-,100,TK_Complete,01/06/2017,19/05/2017,01/06/2017,19/05/2017,"SI1LCA2B85 FS,SI----2C00 SS","SI1LCA2B85,SI----2C00","SI-L--2I45 FS","SI-L--2I45",96,131,96,131,22,30,22,30,6,,"CCGT D1_Integrated Programme Schedule;OEM (Engineering & Deliverables);BOILER AREA;FEEDWATER PUMP STRUCTURE;Condensate Recirculating Pump LCA",2,1,0.0000001587,0.0002034588,0.001017294,0,1.0,0.0000812387,0.0136986301,0.0030769231,0.0002395833,0.0005221932,0.0032175032,0.0,1.0,0.0
1.5.9.5.6-4,SI1LCA3B80,"(RFS) READY FOR SHIPMENT COND.RECIRC. PUMP LCA51",7112,"CCGTD1_IPS",TT_FinMile,"61591",-,-,-,100,TK_Complete,26/01/2018,02/01/2018,26/01/2018,02/01/2018,"SI1LCA3B25 FS","SI1LCA3B25","SI1LCA4B27 SS","SI1LCA4B27",130,163,130,163,30,38,30,38,18,,"CCGT D1_Integrated Programme Schedule;OEM (Engineering & Deliverables);BOILER AREA;FEEDWATER PUMP STRUCTURE;Condensate Recirculating Pump LCA",1,1,0.0000006211,0.001017294,0.0012207528,0,1.0,0.0000812387,0.0068493151,0.0030769231,0.0009375,0.0026109661,0.0038610039,0.0,1.0,0.0
1.5.9.5.6-5,SI1LCA2B65,"(DF) FINAL INPUT FOR M2 COND.RECIRC.PUMP LCA51",7112,"CCGTD1_IPS",TT_FinMile,"61591",-,-,-,100,TK_Complete,25/06/2017,08/06/2017,25/06/2017,08/06/2017,"SI1LCA2B85 FS","SI1LCA2B85","SI1LCA2-10 FS","SI1LCA2-10",99,133,99,133,23,31,23,31,7,,"CCGT D1_Integrated Programme Schedule;OEM (Engineering & Deliverables);BOILER AREA;FEEDWATER PUMP STRUCTURE;Condensate Recirculating Pump LCA",1,1,0.0,0.001017294,0.001017294,0,1.0,0.0000812387,0.0068493151,0.0030769231,0.0,0.0026109661,0.0032175032,0.0,1.0,0.0
1.5.9.5.6-6,SI1LCA3B25,"MANUFACTURING, SHOP TEST CONDENSATE RECIRCULATION PUMP LCA51",7112,"CCGTD1_IPS",TT_Task,"61591",-,-,-,100,TK_Complete,01/06/2017,19/05/2017,08/01/2018,15/12/2017,"SI1LCA2B85 FS","SI1LCA2B85","SI1LCA3B80 FS","SI1LCA3B80",96,131,127,161,22,30,29,37,6,,"CCGT D1_Integrated Programme Schedule;OEM (Engineering & Deliverables);BOILER AREA;FEEDWATER PUMP STRUCTURE;Condensate Recirculating Pump LCA",1,1,0.0000006211,0.0012207528,0.001017294,221,1.0,0.0001212484,0.0068493151,0.0030769231,0.0009375,0.0031331593,0.0032175032,0.4955156951,1.0,0.0163938941
1.5.9.5.6-7,SI1LCA2B60,"(DF) FINAL INPUT FOR MS3 COND. RECIRC.PUMP LCA51",7112,"CCGTD1_IPS",TT_FinMile,"61591",-,-,-,100,TK_Complete,25/06/2017,08/06/2017,25/06/2017,08/06/2017,"SI----2C00 FS,SI1LCA2B85 FS","SI----2C00,SI1LCA2B85","SI1ULA2-60 FS,SI1ULA2B60 FS","SI1ULA2-60,SI1ULA2B60",99,133,99,133,23,31,23,31,7,,"CCGT D1_Integrated Programme Schedule;OEM (Engineering & Deliverables);BOILER AREA;FEEDWATER PUMP STRUCTURE;Condensate Recirculating Pump LCA",2,2,0.0000011593,0.0014242116,0.001017294,0,1.0,0.0000812387,0.0136986301,0.0061538462,0.00175,0.0036553525,0.0032175032,0.0,1.0,0.0
1.5.9.5.6-8,SI1LCA2B80,"QUOTATION STAGE CONDENSATE RECIRC.PUMP LCA51",7112,"CCGTD1_IPS",TT_Task,"61591",-,-,-,100,TK_Complete,01/02/2017,24/01/2017,17/03/2017,18/05/2017,"SI-3062-17 FS,SI1LCA2B75 FS","SI-3062-17,SI1LCA2B75","SI1LCA2B85 FS","SI1LCA2B85",79,114,85,130,18,26,19,30,2,,"CCGT D1_Integrated Programme Schedule;OEM (Engineering & Deliverables);BOILER AREA;FEEDWATER PUMP STRUCTURE;Condensate Recirculating Pump LCA",2,1,0.0000018632,0.0042726348,0.0006103764,44,0.0,0.0001603167,0.0136986301,0.0030769231,0.0028125,0.0109660574,0.0019305019,0.0986547085,0.0,0.0324020497
1.5.9.5.6-9,SI1LCA2B85,"ORDER PLACED CONDENSATE RECIRCULATING PUMP LCA51 (MPA)",7112,"CCGTD1_IPS",TT_Mile,"61591",-,-,-,100,TK_Complete,15/06/2017,19/05/2017,15/06/2017,19/05/2017,"SI1LCA2B80 FS","SI1LCA2B80","SI1LCA3B25 FS,SI1LCA2B65 FS,SI1LCA2-10 FS,SI1LCA2B60 FS,SI1LCA2B14 FS","SI1LCA3B25,SI1LCA2B65,SI1LCA2-10,SI1LCA2B60,SI1LCA2B14",98,131,98,131,22,30,22,30,7,,"CCGT D1_Integrated Programme Schedule;OEM (Engineering & Deliverables);BOILER AREA;FEEDWATER PUMP STRUCTURE;Condensate Recirculating Pump LCA",1,5,0.000002567,0.004069176,0.0008138352,0,1.0,0.0000812387,0.0068493151,0.0153846154,0.003875,0.0104438642,0.0025740026,0.0,1.0,0.0
1.5.9.5.7,61590,"Cable Support System BZP",7112,"CCGTD1_IPS",WBS,"61587",,,,100,Complete,17/07/2017,23/06/2017,10/09/2017,24/08/2017,,,,,102,136,110,144,23,31,25,33,,,"CCGT D1_Integrated Programme Schedule;OEM (Engineering & Deliverables);BOILER AREA;FEEDWATER PUMP STRUCTURE"
1.5.9.5.7-1,SI1BZP2E30,"DETAIL DESIGN CABLE SUPPORT SYSTEM ULA",7112,"CCGTD1_IPS",TT_Task,"61590",-,-,-,100,TK_Complete,17/07/2017,23/06/2017,10/09/2017,24/08/2017,"SI1ULA2-45 FS,SI1ULA2B70 SS","SI1ULA2-45,SI1ULA2B70","","",102,136,110,144,23,31,25,33,9,,"CCGT D1_Integrated Programme Schedule;OEM (Engineering & Deliverables);BOILER AREA;FEEDWATER PUMP STRUCTURE;Cable Support System BZP",2,0,0.0,0.0,0.0032553408,55,0.4,0.0003402224,0.0136986301,0.0,0.0,0.0,0.0102960103,0.1233183857,0.4,0.1061180692
1.5.9.5.8,61589,"Steelworks ULA",7112,"CCGTD1_IPS",WBS,"61587",,,,100,Complete,25/06/2017,02/06/2017,12/06/2018,30/09/2018,,,,,99,133,149,202,23,31,34,47,,,"CCGT D1_Integrated Programme Schedule;OEM (Engineering & Deliverables);BOILER AREA;FEEDWATER PUMP STRUCTURE"
1.5.9.5.8-1,SI1ULA2B60,"(MS3) STEEL STRUCTURE, FINAL DIMENSIONS AND LOADS AVAILABLE ULA",7112,"CCGTD1_IPS",TT_FinMile,"61589",-,-,-,100,TK_Complete,25/06/2017,02/06/2017,25/06/2017,02/06/2017,"SI1LCA2B60 FS,SI1LAC2B60 FS","SI1LCA2B60,SI1LAC2B60","SI1ULA2B70 FS","SI1ULA2B70",99,133,99,133,23,31,23,31,7,,"CCGT D1_Integrated Programme Schedule;OEM (Engineering & Deliverables);BOILER AREA;FEEDWATER PUMP STRUCTURE;Steelworks ULA",2,1,0.0000014491,0.0008138352,0.002034588,0,1.0,0.0000812387,0.0136986301,0.0030769231,0.0021875,0.0020887728,0.0064350064,0.0,1.0,0.0
1.5.9.5.8-2,SI1ULA2B70,"DETAIL DESIGN / CHECKER STEEL STRUCTURE ULA",7112,"CCGTD1_IPS",TT_Task,"61589",-,-,-,100,TK_Complete,26/06/2017,02/06/2017,27/08/2017,27/07/2017,"SI1ULA2B60 FS","SI1ULA2B60","SI1BZP2E30 SS,SI1ULA2B75 FS","SI1BZP2E30,SI1ULA2B75",99,133,108,140,23,31,25,32,8,,"CCGT D1_Integrated Programme Schedule;OEM (Engineering & Deliverables);BOILER AREA;FEEDWATER PUMP STRUCTURE;Steelworks ULA",1,2,0.0000011593,0.0006103764,0.0022380468,62,1.0,0.0001503957,0.0068493151,0.0061538462,0.00175,0.0015665796,0.0070785071,0.1390134529,1.0,0.0283369572
1.5.9.5.8-3,SI1ULA2B75,"(F) DETAIL DESIGN STEEL STRUCTURE WITH CONTRACTOR ULA",7112,"CCGTD1_IPS",TT_Mile,"61589",-,-,-,100,TK_Complete,26/01/2018,29/12/2017,26/01/2018,29/12/2017,"SI1ULA2B70 FS","SI1ULA2B70","SI1ULA3B27 FS","SI1ULA3B27",130,163,130,163,30,38,30,38,17,,"CCGT D1_Integrated Programme Schedule;OEM (Engineering & Deliverables);BOILER AREA;FEEDWATER PUMP STRUCTURE;Steelworks ULA",1,1,0.0000004968,0.0002034588,0.0024415056,0,1.0,0.0000812387,0.0068493151,0.0030769231,0.00075,0.0005221932,0.0077220077,0.0,1.0,0.0
1.5.9.5.8-4,SI1ULA3B27,"FABRICATION DESIGN, FABRICATION, TRANSPORT, ON SITE STEEL STRUCTURE ULA",7112,"CCGTD1_IPS",TT_Task,"61589",-,-,-,100,TK_Complete,26/01/2018,29/12/2017,12/06/2018,30/09/2018,"SI1ULA2B75 FS,SI-U--2B85 FS","SI1ULA2B75,SI-U--2B85","","",130,163,149,202,30,38,34,47,17,,"CCGT D1_Integrated Programme Schedule;OEM (Engineering & Deliverables);BOILER AREA;FEEDWATER PUMP STRUCTURE;Steelworks ULA",2,0,0.0,0.0,0.0032553408,137,0.0,0.0001687928,0.0136986301,0.0,0.0,0.0,0.0102960103,0.3071748879,0.0,0.035875138
1.5.9.5.9,61588,"Concrete / Formwork / Reinforcement ULA",7112,"CCGTD1_IPS",WBS,"61587",,,,100,Complete,15/05/2017,10/04/2017,18/06/2017,30/05/2017,,,,,93,125,98,132,21,29,23,30,,,"CCGT D1_Integrated Programme Schedule;OEM (Engineering & Deliverables);BOILER AREA;FEEDWATER PUMP STRUCTURE"
1.5.9.5.9-1,SI1ULA2-45,"PREPARATION BASIC BUILDING DWGS  ULA",7112,"CCGTD1_IPS",TT_Task,"61588",-,-,-,100,TK_Complete,15/05/2017,10/04/2017,18/06/2017,30/05/2017,"SI-3412-20 FS,SI1ULA2-60 SF","SI-3412-20,SI1ULA2-60","SI1BZP2E30 FS","SI1BZP2E30",93,125,98,132,21,29,23,30,5,,"CCGT D1_Integrated Programme Schedule;OEM (Engineering & Deliverables);BOILER AREA;FEEDWATER PUMP STRUCTURE;Concrete / Formwork / Reinforcement ULA",2,1,0.0000003312,0.0002034588,0.0026449644,34,0.0,0.0001538896,0.0136986301,0.0030769231,0.0005,0.0005221932,0.0083655084,0.0762331839,0.0,0.029768542
1.5.9.5.9-2,SI1ULA2-60,"(MS3) CONCRETE STRUCTURE FINAL DIMENSIONS LOADS AVAILABLE ULA",7112,"CCGTD1_IPS",TT_FinMile,"61588",-,-,-,100,TK_Complete,29/05/2017,23/04/2017,29/05/2017,23/04/2017,"SI1LAC2B60 FS,SI1LCA2B60 FS","SI1LAC2B60,SI1LCA2B60","SI1ULA2-45 SF","SI1ULA2-45",95,127,95,127,22,29,22,29,6,,"CCGT D1_Integrated Programme Schedule;OEM (Engineering & Deliverables);BOILER AREA;FEEDWATER PUMP STRUCTURE;Concrete / Formwork / Reinforcement ULA",2,1,0.0000006211,0.0004069176,0.002034588,0,1.0,0.0000812387,0.0136986301,0.0030769231,0.0009375,0.0010443864,0.0064350064,0.0,1.0,0.0
1.5.9.6,61582,"BOILER BLOWDOWN STRUCTURE",7112,"CCGTD1_IPS",WBS,"61565",,,,100,Complete,26/11/2016,17/11/2016,22/07/2018,25/07/2018,,,,,69,104,155,192,16,24,36,44,,,"CCGT D1_Integrated Programme Schedule;OEM (Engineering & Deliverables);BOILER AREA"
1.5.9.6.1,61586,"Steam Generator Drain Pump LCL",7112,"CCGTD1_IPS",WBS,"61582",,,,100,Complete,26/06/2017,02/06/2017,13/04/2018,15/03/2018,,,,,99,133,141,173,23,31,32,40,,,"CCGT D1_Integrated Programme Schedule;OEM (Engineering & Deliverables);BOILER AREA;BOILER BLOWDOWN STRUCTURE"
1.5.9.6.1-1,SI1LCL4B25,"TRANSPORT STEAM GENERATOR DRAIN PUMP LCL",7112,"CCGTD1_IPS",TT_Task,"61586",-,-,-,100,TK_Complete,26/02/2018,08/02/2018,02/04/2018,15/03/2018,"SI1LCL3B80 FS","SI1LCL3B80","SI1LCL4B42 FS","SI1LCL4B42",134,168,139,173,31,39,32,40,19,,"CCGT D1_Integrated Programme Schedule;OEM (Engineering & Deliverables);BOILER AREA;BOILER BLOWDOWN STRUCTURE;Steam Generator Drain Pump LCL",1,1,0.0000000828,0.0002034588,0.0004069176,35,1.0,0.0001503957,0.0068493151,0.0030769231,0.000125,0.0005221932,0.0012870013,0.0784753363,1.0,0.0283369572
1.5.9.6.1-2,SI1LCL4B42,"(OTD-OS) ON SITE STEAM GENERATOR DRAIN PUMP LCL",7112,"CCGTD1_IPS",TT_FinMile,"61586",-,-,-,100,TK_Complete,13/04/2018,15/03/2018,13/04/2018,15/03/2018,"SI1LCL4B25 FS","SI1LCL4B25","","",141,173,141,173,32,40,32,40,24,,"CCGT D1_Integrated Programme Schedule;OEM (Engineering & Deliverables);BOILER AREA;BOILER BLOWDOWN STRUCTURE;Steam Generator Drain Pump LCL",1,0,0.0,0.0,0.0006103764,0,1.0,0.0000812387,0.0068493151,0.0,0.0,0.0,0.0019305019,0.0,1.0,0.0
1.5.9.6.1-3,SI1LCL3B25,"DETAIL DESIGN, MANUFACTURING, SHOP TEST STEAM GENERATOR  DRAIN PUMP LCL",7112,"CCGTD1_IPS",TT_Task,"61586",-,-,-,100,TK_Complete,26/06/2017,02/06/2017,09/02/2018,11/12/2017,"","","SI1LCL3B80 FS","SI1LCL3B80",99,133,132,160,23,31,30,37,8,,"CCGT D1_Integrated Programme Schedule;OEM (Engineering & Deliverables);BOILER AREA;BOILER BLOWDOWN STRUCTURE;Steam Generator Drain Pump LCL",0,1,0.0,0.0006103764,0.0,228,1.0,0.0000812387,0.0,0.0030769231,0.0,0.0015665796,0.0,0.5112107623,1.0,0.0
1.5.9.6.1-4,SI1LCL3B80,"(RFS) READY FOR SHIPMENT STEAM GENERATOR  DRAIN PUMP LCL",7112,"CCGTD1_IPS",TT_FinMile,"61586",-,-,-,100,TK_Complete,25/02/2018,15/01/2018,25/02/2018,15/01/2018,"SI1LCL3B25 FS","SI1LCL3B25","SI1LCL4B25 FS","SI1LCL4B25",134,165,134,165,31,38,31,38,18,,"CCGT D1_Integrated Programme Schedule;OEM (Engineering & Deliverables);BOILER AREA;BOILER BLOWDOWN STRUCTURE;Steam Generator Drain Pump LCL",1,1,0.0000000828,0.0004069176,0.0002034588,0,1.0,0.0000812387,0.0068493151,0.0030769231,0.000125,0.0010443864,0.0006435006,0.0,1.0,0.0
1.5.9.6.2,61585,"Clean Drains Tank LBH",7112,"CCGTD1_IPS",WBS,"61582",,,,100,Complete,26/11/2016,17/11/2016,22/07/2018,25/07/2018,,,,,69,104,155,192,16,24,36,44,,,"CCGT D1_Integrated Programme Schedule;OEM (Engineering & Deliverables);BOILER AREA;BOILER BLOWDOWN STRUCTURE"
1.5.9.6.2-1,SI1LBH4D40,"(OTD-OS) ON SITE CLEAN DRAIN FLASH TANK LBH",7112,"CCGTD1_IPS",TT_FinMile,"61585",-,-,-,100,TK_Complete,22/07/2018,25/07/2018,22/07/2018,25/07/2018,"SI1LBH4D42 FS","SI1LBH4D42","","",155,192,155,192,36,44,36,44,32,,"CCGT D1_Integrated Programme Schedule;OEM (Engineering & Deliverables);BOILER AREA;BOILER BLOWDOWN STRUCTURE;Clean Drains Tank LBH",1,0,0.0,0.0,0.0028484232,0,1.0,0.0000812387,0.0068493151,0.0,0.0,0.0,0.009009009,0.0,1.0,0.0
1.5.9.6.2-2,SI1LBH2D80,"BASIC DESIGN, QUOTATION STAGE, ORDERING CLEAN DRAIN FLASH TANK LBH",7112,"CCGTD1_IPS",TT_Task,"61585",-,-,-,100,TK_Complete,26/11/2016,17/11/2016,17/03/2017,28/04/2017,"SI1HA-2-85 FS","SI1HA-2-85","SI1LBH3D25 FS","SI1LBH3D25",69,104,85,128,16,24,19,29,1,,"CCGT D1_Integrated Programme Schedule;OEM (Engineering & Deliverables);BOILER AREA;BOILER BLOWDOWN STRUCTURE;Clean Drains Tank LBH",1,1,0.0000016562,0.0008138352,0.002034588,111,0.0,0.0000883862,0.0068493151,0.0030769231,0.0025,0.0020887728,0.0064350064,0.2488789238,0.0,0.0029286799
1.5.9.6.2-3,SI1LBH3D80,"(RFS) READY FOR SHIPMENT CLEAN DRAIN FLASH TANK LBH",7112,"CCGTD1_IPS",TT_FinMile,"61585",-,-,-,100,TK_Complete,26/05/2018,13/06/2018,26/05/2018,13/06/2018,"SI1LBH3D25 FS","SI1LBH3D25","SI1LBH4D42 FS","SI1LBH4D42",147,186,147,186,34,43,34,43,29,,"CCGT D1_Integrated Programme Schedule;OEM (Engineering & Deliverables);BOILER AREA;BOILER BLOWDOWN STRUCTURE;Clean Drains Tank LBH",1,1,0.0000009937,0.0004069176,0.0024415056,0,1.0,0.0000812387,0.0068493151,0.0030769231,0.0015,0.0010443864,0.0077220077,0.0,1.0,0.0
1.5.9.6.2-4,SI1LBH3D25,"DETAIL DESIGN, MANUFTURING CLEAN DRAIN FLASH TANK LBH",7112,"CCGTD1_IPS",TT_Task,"61585",-,-,-,100,TK_Complete,29/05/2017,29/04/2017,10/04/2018,12/06/2018,"SI1LBH2D80 FS","SI1LBH2D80","SI1LBH3D80 FS","SI1LBH3D80",95,128,140,186,22,29,32,43,6,,"CCGT D1_Integrated Programme Schedule;OEM (Engineering & Deliverables);BOILER AREA;BOILER BLOWDOWN STRUCTURE;Clean Drains Tank LBH",1,1,0.0000013663,0.0006103764,0.0022380468,316,0.0,0.0001564778,0.0068493151,0.0030769231,0.0020625,0.0015665796,0.0070785071,0.7085201794,0.0,0.0308290811
1.5.9.6.2-5,SI1LBH4D42,"TRANSPORT CLEAN DRAIN FLASH TANK LBH",7112,"CCGTD1_IPS",TT_Task,"61585",-,-,-,100,TK_Complete,27/05/2018,14/06/2018,22/07/2018,25/07/2018,"SI1LBH3D80 FS","SI1LBH3D80","SI1LBH4D40 FS","SI1LBH4D40",147,186,155,192,34,43,36,44,29,,"CCGT D1_Integrated Programme Schedule;OEM (Engineering & Deliverables);BOILER AREA;BOILER BLOWDOWN STRUCTURE;Clean Drains Tank LBH",1,1,0.0000005383,0.0002034588,0.0026449644,56,1.0,0.0001503957,0.0068493151,0.0030769231,0.0008125,0.0005221932,0.0083655084,0.1255605381,1.0,0.0283369572
1.5.9.6.3,61584,"Steelworks UHW",7112,"CCGTD1_IPS",WBS,"61582",,,,100,Complete,25/07/2017,24/07/2017,27/05/2018,27/06/2018,,,,,103,140,147,188,24,32,34,44,,,"CCGT D1_Integrated Programme Schedule;OEM (Engineering & Deliverables);BOILER AREA;BOILER BLOWDOWN STRUCTURE"
1.5.9.6.3-1,SI1UHW2B75,"(F) DETAIL DESIGN STEEL STRUCTURE WITH CONTRACTOR UHW",7112,"CCGTD1_IPS",TT_Mile,"61584",-,-,-,100,TK_Complete,26/01/2018,29/12/2017,26/01/2018,29/12/2017,"SI1UHW2B70 FS","SI1UHW2B70","SI1UHW3B27 FS","SI1UHW3B27",130,163,130,163,30,38,30,38,17,,"CCGT D1_Integrated Programme Schedule;OEM (Engineering & Deliverables);BOILER AREA;BOILER BLOWDOWN STRUCTURE;Steelworks UHW",1,1,0.0000000828,0.0002034588,0.0004069176,0,1.0,0.0000812387,0.0068493151,0.0030769231,0.000125,0.0005221932,0.0012870013,0.0,1.0,0.0
1.5.9.6.3-2,SI1UHW3B27,"FABRICATION DESIGN, FABRICATION, TRANSPORT, ON SITE STEEL STRUCTURE UHW",7112,"CCGTD1_IPS",TT_Task,"61584",-,-,-,100,TK_Complete,26/01/2018,29/12/2017,27/05/2018,27/06/2018,"SI1UHW2B75 FS,SI-U--2B85 FS","SI1UHW2B75,SI-U--2B85","","",130,163,147,188,30,38,34,44,17,,"CCGT D1_Integrated Programme Schedule;OEM (Engineering & Deliverables);BOILER AREA;BOILER BLOWDOWN STRUCTURE;Steelworks UHW",2,0,0.0,0.0,0.0012207528,121,0.0,0.0001666443,0.0136986301,0.0,0.0,0.0,0.0038610039,0.2713004484,0.0,0.0349947665
1.5.9.6.3-3,SI1UHW2B60,"(MS3) STEEL STRUCTURE, FINAL DIMENSIONS AND LOADS AVAILABLE UHW",7112,"CCGTD1_IPS",TT_Mile,"61584",-,-,-,100,TK_Complete,25/07/2017,24/07/2017,25/07/2017,24/07/2017,"","","SI1UHW2B70 FS","SI1UHW2B70",103,140,103,140,24,32,24,32,9,,"CCGT D1_Integrated Programme Schedule;OEM (Engineering & Deliverables);BOILER AREA;BOILER BLOWDOWN STRUCTURE;Steelworks UHW",0,1,0.0,0.0006103764,0.0,0,1.0,0.0000812387,0.0,0.0030769231,0.0,0.0015665796,0.0,0.0,1.0,0.0
1.5.9.6.3-4,SI1UHW2B70,"DETAIL DESIGN / CHECKER STEEL STRUCTURE UHW",7112,"CCGTD1_IPS",TT_Task,"61584",-,-,-,100,TK_Complete,25/07/2017,24/07/2017,18/09/2017,09/10/2017,"SI1UHW2B60 FS","SI1UHW2B60","SI1UHW2B75 FS","SI1UHW2B75",103,140,111,151,24,32,26,35,9,,"CCGT D1_Integrated Programme Schedule;OEM (Engineering & Deliverables);BOILER AREA;BOILER BLOWDOWN STRUCTURE;Steelworks UHW",1,1,0.0000000828,0.0004069176,0.0002034588,55,0.0,0.0001503957,0.0068493151,0.0030769231,0.000125,0.0010443864,0.0006435006,0.1233183857,0.0,0.0283369572
1.5.9.6.4,61583,"Concrete Structure Boiler Blowdown Structure  UHW",7112,"CCGTD1_IPS",WBS,"61582",,,,100,Complete,10/03/2017,23/02/2017,28/04/2017,29/03/2017,,,,,84,118,91,123,19,27,21,28,,,"CCGT D1_Integrated Programme Schedule;OEM (Engineering & Deliverables);BOILER AREA;BOILER BLOWDOWN STRUCTURE"
1.5.9.6.4-1,SI1UHW2-45,"PREPARATION BASIC BUILDING DWGS  UHW",7112,"CCGTD1_IPS",TT_Task,"61583",-,-,-,100,TK_Complete,10/03/2017,23/02/2017,13/04/2017,29/03/2017,"SI-3412-20 FS,SI1UHW2-60 FF","SI-3412-20,SI1UHW2-60","","",84,118,89,123,19,27,20,28,3,,"CCGT D1_Integrated Programme Schedule;OEM (Engineering & Deliverables);BOILER AREA;BOILER BLOWDOWN STRUCTURE;Concrete Structure Boiler Blowdown Structure  UHW",2,0,0.0,0.0,0.0006103764,34,1.0,0.0001538896,0.0136986301,0.0,0.0,0.0,0.0019305019,0.0762331839,1.0,0.029768542
1.5.9.6.4-2,SI1UHW2-60,"(MS3) CONCRETE STRUCTURE FINAL DIMENSIONS LOADS AVAILABLE UHW",7112,"CCGTD1_IPS",TT_FinMile,"61583",-,-,-,100,TK_Complete,28/04/2017,21/03/2017,28/04/2017,21/03/2017,"","","SI1UHW2-45 FF","SI1UHW2-45",91,122,91,122,21,28,21,28,4,,"CCGT D1_Integrated Programme Schedule;OEM (Engineering & Deliverables);BOILER AREA;BOILER BLOWDOWN STRUCTURE;Concrete Structure Boiler Blowdown Structure  UHW",0,1,0.0,0.0002034588,0.0,0,1.0,0.0000812387,0.0,0.0030769231,0.0,0.0005221932,0.0,0.0,1.0,0.0
1.5.9.7,61570,"STEAM GENERATOR BUILDING",7112,"CCGTD1_IPS",WBS,"61565",,,,100,Complete,02/07/2016,09/07/2016,24/08/2018,30/08/2018,,,,,48,86,160,197,11,20,37,46,,,"CCGT D1_Integrated Programme Schedule;OEM (Engineering & Deliverables);BOILER AREA"
1.5.9.7.1,61581,"Electrical and I&C Equipment HRSG",7112,"CCGTD1_IPS",WBS,"61570",,,,100,Complete,10/06/2017,07/05/2017,08/08/2018,31/07/2018,,,,,97,129,158,193,22,30,36,45,,,"CCGT D1_Integrated Programme Schedule;OEM (Engineering & Deliverables);BOILER AREA;STEAM GENERATOR BUILDING"
1.5.9.7.1-1,SI1HA-2-70,"(DF) I&C DATA FOR HRSG",7112,"CCGTD1_IPS",TT_FinMile,"61581",-,-,-,100,TK_Complete,02/10/2017,05/09/2017,02/10/2017,05/09/2017,"SI-HA-2-10 FS,SI1CJF2-80 FS,SI-HA-2-65 FS","SI-HA-2-10,SI1CJF2-80,SI-HA-2-65","SI-L--2-70 FS,SI-C--2-55 FS","SI-L--2-70,SI-C--2-55",113,146,113,146,26,34,26,34,12,,"CCGT D1_Integrated Programme Schedule;OEM (Engineering & Deliverables);BOILER AREA;STEAM GENERATOR BUILDING;Electrical and I&C Equipment HRSG",3,2,0.0000072871,0.0022380468,0.0032553408,0,1.0,0.0000812387,0.0205479452,0.0061538462,0.011,0.0057441253,0.0102960103,0.0,1.0,0.0
1.5.9.7.1-2,SI1CJF3-80,"(RFS) READY FOR SHIPMENT ELECTRICAL AND I&C-EQUIPMENT FOR HRSG",7112,"CCGTD1_IPS",TT_Mile,"61581",-,-,-,100,TK_Complete,06/07/2018,16/06/2018,06/07/2018,16/06/2018,"SI1CJF3-25 FS","SI1CJF3-25","SI1CJF4-42 FS","SI1CJF4-42",153,187,153,187,35,43,35,43,32,,"CCGT D1_Integrated Programme Schedule;OEM (Engineering & Deliverables);BOILER AREA;STEAM GENERATOR BUILDING;Electrical and I&C Equipment HRSG",1,1,0.0000012421,0.0004069176,0.003051882,0,1.0,0.0000812387,0.0068493151,0.0030769231,0.001875,0.0010443864,0.0096525097,0.0,1.0,0.0
1.5.9.7.1-3,SI1CJF4-40,"(OTD-OS) ON SITE ELECTRICAL AND I&C-EQUIPMENT FOR HRSG",7112,"CCGTD1_IPS",TT_FinMile,"61581",-,-,-,100,TK_Complete,08/08/2018,31/07/2018,08/08/2018,31/07/2018,"SI1CJF4-42 FS","SI1CJF4-42","","",158,193,158,193,36,45,36,45,34,,"CCGT D1_Integrated Programme Schedule;OEM (Engineering & Deliverables);BOILER AREA;STEAM GENERATOR BUILDING;Electrical and I&C Equipment HRSG",1,0,0.0,0.0,0.0034587996,0,1.0,0.0000812387,0.0068493151,0.0,0.0,0.0,0.0109395109,0.0,1.0,0.0
1.5.9.7.1-4,SI1HA-2-31,"DATA INPUT HRSG COMPLETED FOR I&C DESIGN",7112,"CCGTD1_IPS",TT_FinMile,"61581",-,-,-,100,TK_Complete,25/06/2017,09/06/2017,25/06/2017,09/06/2017,"SI-HA-2-10 FS","SI-HA-2-10","SI1CJF2-80 FS,SI-HA-2-68& SS,SI-HA-2-28# FS","SI1CJF2-80,SI-HA-2-68&,SI-HA-2-28#",99,134,99,134,23,31,23,31,7,,"CCGT D1_Integrated Programme Schedule;OEM (Engineering & Deliverables);BOILER AREA;STEAM GENERATOR BUILDING;Electrical and I&C Equipment HRSG",1,2,0.0000009109,0.0036622584,0.0024415056,0,1.0,0.0000812387,0.0068493151,0.0061538462,0.001375,0.0093994778,0.0077220077,0.0,1.0,0.0
1.5.9.7.1-5,SI1CJF3-25,"DETAIL DESIGN, MANUFACTURING ELECTRICAL AND I&C-EQUIPMENT FOR HRSG",7112,"CCGTD1_IPS",TT_Task,"61581",-,-,-,100,TK_Complete,02/11/2017,03/10/2017,29/04/2018,15/06/2018,"SI1CJF2-80 FS","SI1CJF2-80","SI1CJF3-80 FS","SI1CJF3-80",118,150,143,187,27,35,33,43,14,,"CCGT D1_Integrated Programme Schedule;OEM (Engineering & Deliverables);BOILER AREA;STEAM GENERATOR BUILDING;Electrical and I&C Equipment HRSG",1,1,0.000001739,0.0006103764,0.0028484232,178,0.0,0.0002158741,0.0068493151,0.0030769231,0.002625,0.0015665796,0.009009009,0.399103139,0.0,0.0551665795
1.5.9.7.1-6,SI1CJF4-42,"TRANSPORT ELECTRICAL AND I&C-EQUIPMENT FOR HRSG",7112,"CCGTD1_IPS",TT_Task,"61581",-,-,-,100,TK_Complete,06/07/2018,25/06/2018,08/08/2018,31/07/2018,"SI1CJF3-80 FS","SI1CJF3-80","SI1CJF4-40 FS","SI1CJF4-40",153,188,158,193,35,43,36,45,32,,"CCGT D1_Integrated Programme Schedule;OEM (Engineering & Deliverables);BOILER AREA;STEAM GENERATOR BUILDING;Electrical and I&C Equipment HRSG",1,1,0.0000006625,0.0002034588,0.0032553408,33,0.8,0.0001503957,0.0068493151,0.0030769231,0.001,0.0005221932,0.0102960103,0.0739910314,0.8,0.0283369572
1.5.9.7.1-7,SI1CJF2-80,"BASIC DESIGN,QUOTATION STAGE, ODERING ELECTRICAL AND I&C-EQUIPMENT FOR HRSG",7112,"CCGTD1_IPS",TT_Task,"61581",-,-,-,100,TK_Complete,10/06/2017,07/05/2017,09/10/2017,02/10/2017,"SI1HA-2-85 FS,SI1HA-2-31 FS","SI1HA-2-85,SI1HA-2-31","SI1CJF3-25 FS,SI1HA-2-70 FS","SI1CJF3-25,SI1HA-2-70",97,129,114,150,22,30,26,35,7,,"CCGT D1_Integrated Programme Schedule;OEM (Engineering & Deliverables);BOILER AREA;STEAM GENERATOR BUILDING;Electrical and I&C Equipment HRSG",2,2,0.0000076183,0.0032553408,0.0026449644,121,0.0,0.0001581872,0.0136986301,0.0061538462,0.0115,0.0083550914,0.0083655084,0.2713004484,0.0,0.0315294822
1.5.9.7.2,61580,"Mechanical Equipment Pipes",7112,"CCGTD1_IPS",WBS,"61570",,,,100,Complete,03/11/2016,03/11/2016,25/07/2018,18/08/2018,,,,,66,102,156,196,15,24,36,45,,,"CCGT D1_Integrated Programme Schedule;OEM (Engineering & Deliverables);BOILER AREA;STEAM GENERATOR BUILDING"
1.5.9.7.2-1,SI1HAD3E25,"BASIC DESIGN, DETAIL DESIGN, ORDERING, DELIVERY, MANUFACTURING PIPING MATERIAL HRSG",7112,"CCGTD1_IPS",TT_Task,"61580",-,-,-,100,TK_Complete,14/02/2017,01/02/2017,01/05/2018,25/06/2018,"SI1HA-2A11 FS","SI1HA-2A11","SI1HAD3E80 FS,SI1HA-3-25# FF,SI1HA-3-25# SS","SI1HAD3E80,SI1HA-3-25#,SI1HA-3-25#",80,115,143,188,18,27,33,43,2,,"CCGT D1_Integrated Programme Schedule;OEM (Engineering & Deliverables);BOILER AREA;STEAM GENERATOR BUILDING;Mechanical Equipment Pipes",1,1,0.0000009937,0.0004069176,0.0024415056,441,0.0,0.0002141207,0.0068493151,0.0030769231,0.0015,0.0010443864,0.0077220077,0.9887892377,0.0,0.0544481294
1.5.9.7.2-2,SI1HAD4E42,"TRANSPORT PIPING MATERIAL HRSG",7112,"CCGTD1_IPS",TT_Task,"61580",-,-,-,100,TK_Complete,06/07/2018,23/07/2018,25/07/2018,18/08/2018,"SI1HAD3E80 FS","SI1HAD3E80","SI1HA-4-25# SS,SI1HA-4-25# FF","SI1HA-4-25#,SI1HA-4-25#",153,192,156,196,35,44,36,45,32,,"CCGT D1_Integrated Programme Schedule;OEM (Engineering & Deliverables);BOILER AREA;STEAM GENERATOR BUILDING;Mechanical Equipment Pipes",1,0,0.0,0.0,0.0028484232,19,0.0,0.0001503957,0.0068493151,0.0,0.0,0.0,0.009009009,0.0426008969,0.0,0.0283369572
1.5.9.7.2-3,SI1HA-2A40,"AGREED PIPING DESIGN BASIC REPORT (PDBR)",7112,"CCGTD1_IPS",TT_Mile,"61580",-,-,-,100,TK_Complete,14/02/2017,01/02/2017,14/02/2017,01/02/2017,"SI1HA-2A11 FS","SI1HA-2A11","SI1HA-2A54 FS","SI1HA-2A54",80,115,80,115,18,27,18,27,2,,"CCGT D1_Integrated Programme Schedule;OEM (Engineering & Deliverables);BOILER AREA;STEAM GENERATOR BUILDING;Mechanical Equipment Pipes",1,1,0.0000024842,0.001017294,0.0024415056,0,1.0,0.0000812387,0.0068493151,0.0030769231,0.00375,0.0026109661,0.0077220077,0.0,1.0,0.0
1.5.9.7.2-4,SI1HA-2E15,"PRELIMINARY PIPING DESIGN BASIC REPORT HRSG",7112,"CCGTD1_IPS",TT_FinMile,"61580",-,-,-,100,TK_Complete,31/01/2017,15/01/2017,31/01/2017,15/01/2017,"SI1HA-2-85 FS","SI1HA-2-85","SI1HA-2A11 FF","SI1HA-2A11",78,113,78,113,18,26,18,26,1,,"CCGT D1_Integrated Programme Schedule;OEM (Engineering & Deliverables);BOILER AREA;STEAM GENERATOR BUILDING;Mechanical Equipment Pipes",1,1,0.0,0.002034588,0.002034588,0,1.0,0.0000812387,0.0068493151,0.0030769231,0.0,0.0052219321,0.0064350064,0.0,1.0,0.0
1.5.9.7.2-5,SI1HAD4E44,"(OTD-OS) ON SITE PIPING MATERIAL HRSG",7112,"CCGTD1_IPS",TT_FinMile,"61580",-,-,-,100,TK_Complete,25/07/2018,18/08/2018,25/07/2018,18/08/2018,"","","","",156,196,156,196,36,45,36,45,32,,"CCGT D1_Integrated Programme Schedule;OEM (Engineering & Deliverables);BOILER AREA;STEAM GENERATOR BUILDING;Mechanical Equipment Pipes",0,0,0.0,0.0,0.0,0,1.0,0.0000812387,0.0,0.0,0.0,0.0,0.0,0.0,1.0,0.0
1.5.9.7.2-6,SI1HAD3E80,"(RFS) READY FOR SHIPMENT PIPING MATERIAL HRSG",7112,"CCGTD1_IPS",TT_Mile,"61580",-,-,-,100,TK_Complete,06/07/2018,26/06/2018,06/07/2018,26/06/2018,"SI1HAD3E25 FS","SI1HAD3E25","SI1HAD4E42 FS","SI1HAD4E42",153,188,153,188,35,44,35,44,32,,"CCGT D1_Integrated Programme Schedule;OEM (Engineering & Deliverables);BOILER AREA;STEAM GENERATOR BUILDING;Mechanical Equipment Pipes",1,1,0.0000005383,0.0002034588,0.0026449644,0,1.0,0.0000812387,0.0068493151,0.0030769231,0.0008125,0.0005221932,0.0083655084,0.0,1.0,0.0
1.5.9.7.2-7,SI1HA-2A11,"PROJECT SPECIFIC PRELIMINARY PIPE ROUTING AND SUPPORT CONCEPT HRSG",7112,"CCGTD1_IPS",TT_Task,"61580",-,-,-,100,TK_Complete,03/11/2016,03/11/2016,31/01/2017,31/01/2017,"SI1HA-2E15 FF,SI1HA-2-85 FS","SI1HA-2E15,SI1HA-2-85","SI1HAD3E25 FS,SI1HA-2A40 FS","SI1HAD3E25,SI1HA-2A40",66,102,78,115,15,24,18,26,0,,"CCGT D1_Integrated Programme Schedule;OEM (Engineering & Deliverables);BOILER AREA;STEAM GENERATOR BUILDING;Mechanical Equipment Pipes",2,2,0.000004099,0.0018311292,0.0022380468,89,1.0,0.0001561266,0.0136986301,0.0061538462,0.0061875,0.0046997389,0.0070785071,0.1995515695,1.0,0.030685178
1.5.9.7.2-8,SI1HA-2A55,"PIPE STRESS ANALYSIS AND REPORT FOR HRSG SYSTEMS LAB/LBA10/LBB/LBC AVAILABLE",7112,"CCGTD1_IPS",TT_FinMile,"61580",-,-,-,100,TK_Complete,30/04/2017,28/04/2017,30/04/2017,28/04/2017,"SI1HA-2A54 FS","SI1HA-2A54","SI1HA-2A56 FS","SI1HA-2A56",91,128,91,128,21,29,21,29,4,,"CCGT D1_Integrated Programme Schedule;OEM (Engineering & Deliverables);BOILER AREA;STEAM GENERATOR BUILDING;Mechanical Equipment Pipes",1,1,0.0000011593,0.0006103764,0.0028484232,0,1.0,0.0000812387,0.0068493151,0.0030769231,0.00175,0.0015665796,0.009009009,0.0,1.0,0.0
1.5.9.7.2-9,SI1HA-2A56,"REVIEW PIPE STRESS CALCULATION FOR HRSG SYSTEMS LAB/LBA10/LBB/LBC",7112,"CCGTD1_IPS",TT_Task,"61580",-,-,-,100,TK_Complete,01/05/2017,29/04/2017,21/05/2017,03/08/2017,"SI1HA-2A55 FS","SI1HA-2A55","SI1HA-2E20 FS","SI1HA-2E20",91,128,94,141,21,29,22,33,4,,"CCGT D1_Integrated Programme Schedule;OEM (Engineering & Deliverables);BOILER AREA;STEAM GENERATOR BUILDING;Mechanical Equipment Pipes",1,1,0.0000006625,0.0004069176,0.003051882,20,0.0,0.0001503957,0.0068493151,0.0030769231,0.001,0.0010443864,0.0096525097,0.0448430493,0.0,0.0283369572
1.5.9.7.2-10,SI1HA-2E20,"(DF) BASIC DESIGN PIPE ROUTING FOR HRSG SYSTEMS LAB/LBA10/LBB/LBC",7112,"CCGTD1_IPS",TT_FinMile,"61580",-,-,-,100,TK_Complete,05/08/2017,07/07/2017,05/08/2017,07/07/2017,"SI1HA-2A56 FS","SI1HA-2A56","SI1HA-2A65 FS","SI1HA-2A65",105,138,105,138,24,32,24,32,9,,"CCGT D1_Integrated Programme Schedule;OEM (Engineering & Deliverables);BOILER AREA;STEAM GENERATOR BUILDING;Mechanical Equipment Pipes",1,1,0.0000000828,0.0002034588,0.0032553408,0,1.0,0.0000812387,0.0068493151,0.0030769231,0.000125,0.0005221932,0.0102960103,0.0,1.0,0.0
1.5.9.7.2-11,SI1HA-2A65,"(DF) FINAL INPUT FOR M2 HRSG",7112,"CCGTD1_IPS",TT_FinMile,"61580",-,-,-,100,TK_Complete,05/08/2017,07/07/2017,05/08/2017,07/07/2017,"SI1HA-2E20 FS,SI1HA-2A54 SS","SI1HA-2E20,SI1HA-2A54","","",105,138,105,138,24,32,24,32,9,,"CCGT D1_Integrated Programme Schedule;OEM (Engineering & Deliverables);BOILER AREA;STEAM GENERATOR BUILDING;Mechanical Equipment Pipes",2,0,0.0,0.0,0.0034587996,0,1.0,0.0000812387,0.0136986301,0.0,0.0,0.0,0.0109395109,0.0,1.0,0.0
1.5.9.7.2-12,SI1HA-2A54,"STRESS ANALYSIS BY MTEC FOR HRSG-SYSTEMS LAB/LBA10/LBB/C",7112,"CCGTD1_IPS",TT_Task,"61580",-,-,-,100,TK_Complete,14/02/2017,01/02/2017,18/04/2017,28/04/2017,"SI1HA-2A40 FS","SI1HA-2A40","SI1HA-2A65 SS,SI1HA-2A55 FS","SI1HA-2A65,SI1HA-2A55",80,115,89,128,18,27,20,29,2,,"CCGT D1_Integrated Programme Schedule;OEM (Engineering & Deliverables);BOILER AREA;STEAM GENERATOR BUILDING;Mechanical Equipment Pipes",1,2,0.000002153,0.0008138352,0.0026449644,63,0.0,0.0001503957,0.0068493151,0.0061538462,0.00325,0.0020887728,0.0083655084,0.1412556054,0.0,0.0283369572
1.5.9.7.3,61579,"Mechanical Equipment Drums",7112,"CCGTD1_IPS",WBS,"61570",,,,100,Complete,03/11/2016,03/11/2016,27/05/2018,26/04/2018,,,,,66,102,147,179,15,24,34,41,,,"CCGT D1_Integrated Programme Schedule;OEM (Engineering & Deliverables);BOILER AREA;STEAM GENERATOR BUILDING"
1.5.9.7.3-1,SI1HA-3D25,"DESIGN, MANUFACTURING, DELIVERY HRSG DRUMS",7112,"CCGTD1_IPS",TT_Task,"61579",-,-,-,100,TK_Complete,03/11/2016,03/11/2016,23/01/2018,09/04/2018,"SI1HA-2-85 FS","SI1HA-2-85","SI1HA-3-25# FF,SI1HA-3D80 FS,SI1HA-3-25# SS","SI1HA-3-25#,SI1HA-3D80,SI1HA-3-25#",66,102,129,177,15,24,30,41,0,,"CCGT D1_Integrated Programme Schedule;OEM (Engineering & Deliverables);BOILER AREA;STEAM GENERATOR BUILDING;Mechanical Equipment Drums",1,1,0.0000012421,0.0006103764,0.002034588,446,0.0,0.0001099576,0.0068493151,0.0030769231,0.001875,0.0015665796,0.0064350064,1.0,0.0,0.0117674887
1.5.9.7.3-2,SI1HA-4D42,"TRANSPORT HRSG DRUMS",7112,"CCGTD1_IPS",TT_Task,"61579",-,-,-,100,TK_Complete,17/05/2018,17/04/2018,27/05/2018,26/04/2018,"SI1HA-3D80 FS","SI1HA-3D80","SI1HA-4-25# SS,SI1HA-4-25# FF,SI1HA-4D44 FS","SI1HA-4-25#,SI1HA-4-25#,SI1HA-4D44",146,178,147,179,34,41,34,41,28,,"CCGT D1_Integrated Programme Schedule;OEM (Engineering & Deliverables);BOILER AREA;STEAM GENERATOR BUILDING;Mechanical Equipment Drums",1,1,0.0000004968,0.0002034588,0.0024415056,10,1.0,0.0001503957,0.0068493151,0.0030769231,0.00075,0.0005221932,0.0077220077,0.0224215247,1.0,0.0283369572
1.5.9.7.3-3,SI1HA-3D80,"(RFS) READY FOR SHIPMENT HRSG DRUMS",7112,"CCGTD1_IPS",TT_Mile,"61579",-,-,-,100,TK_Complete,17/05/2018,17/04/2018,17/05/2018,17/04/2018,"SI1HA-3D25 FS","SI1HA-3D25","SI1HA-4D42 FS","SI1HA-4D42",146,178,146,178,34,41,34,41,28,,"CCGT D1_Integrated Programme Schedule;OEM (Engineering & Deliverables);BOILER AREA;STEAM GENERATOR BUILDING;Mechanical Equipment Drums",1,1,0.0000009109,0.0004069176,0.0022380468,0,1.0,0.0000812387,0.0068493151,0.0030769231,0.001375,0.0010443864,0.0070785071,0.0,1.0,0.0
1.5.9.7.3-4,SI1HA-4D44,"(OTD-OS) ON SITE HRSG DRUMS",7112,"CCGTD1_IPS",TT_FinMile,"61579",-,-,-,100,TK_Complete,27/05/2018,26/04/2018,27/05/2018,26/04/2018,"SI1HA-4D42 FS","SI1HA-4D42","","",147,179,147,179,34,41,34,41,29,,"CCGT D1_Integrated Programme Schedule;OEM (Engineering & Deliverables);BOILER AREA;STEAM GENERATOR BUILDING;Mechanical Equipment Drums",1,0,0.0,0.0,0.0026449644,0,1.0,0.0000812387,0.0068493151,0.0,0.0,0.0,0.0083655084,0.0,1.0,0.0
1.5.9.7.4,61578,"Mechanical Equipment Modules",7112,"CCGTD1_IPS",WBS,"61570",,,,100,Complete,26/01/2018,13/01/2018,06/05/2018,08/04/2018,,,,,130,165,144,177,30,38,33,41,,,"CCGT D1_Integrated Programme Schedule;OEM (Engineering & Deliverables);BOILER AREA;STEAM GENERATOR BUILDING"
1.5.9.7.4-1,SI1HA-3C80,"(RFS) READY FOR SHIPMENT MODULES",7112,"CCGTD1_IPS",TT_Mile,"61578",-,-,-,100,TK_Complete,26/01/2018,13/01/2018,26/01/2018,13/01/2018,"","","SI1HA-4C44 FS","SI1HA-4C44",130,165,130,165,30,38,30,38,17,,"CCGT D1_Integrated Programme Schedule;OEM (Engineering & Deliverables);BOILER AREA;STEAM GENERATOR BUILDING;Mechanical Equipment Modules",0,1,0.0,0.0004069176,0.0,0,1.0,0.0000812387,0.0,0.0030769231,0.0,0.0010443864,0.0,0.0,1.0,0.0
1.5.9.7.4-2,SI1HA-4C42,"(OTD-OS) ON SITE MODULES",7112,"CCGTD1_IPS",TT_FinMile,"61578",-,-,-,100,TK_Complete,06/05/2018,08/04/2018,06/05/2018,08/04/2018,"SI1HA-4C44 FS","SI1HA-4C44","","",144,177,144,177,33,41,33,41,27,,"CCGT D1_Integrated Programme Schedule;OEM (Engineering & Deliverables);BOILER AREA;STEAM GENERATOR BUILDING;Mechanical Equipment Modules",1,0,0.0,0.0,0.0004069176,0,1.0,0.0000812387,0.0068493151,0.0,0.0,0.0,0.0012870013,0.0,1.0,0.0
1.5.9.7.4-3,SI1HA-4C44,"TRANSPORT MODULES",7112,"CCGTD1_IPS",TT_Task,"61578",-,-,-,100,TK_Complete,26/03/2018,14/03/2018,06/04/2018,08/04/2018,"SI1HA-3C80 FS","SI1HA-3C80","SI1HA-4C42 FS","SI1HA-4C42",138,173,140,177,32,40,32,41,23,,"CCGT D1_Integrated Programme Schedule;OEM (Engineering & Deliverables);BOILER AREA;STEAM GENERATOR BUILDING;Mechanical Equipment Modules",1,1,0.0000000414,0.0002034588,0.0002034588,11,0.0,0.0001503957,0.0068493151,0.0030769231,0.0000625,0.0005221932,0.0006435006,0.0246636771,0.0,0.0283369572
1.5.9.7.5,61577,"Steel Structure HRSG - Inlet & Outlet Duct",7112,"CCGTD1_IPS",WBS,"61570",,,,100,Complete,26/03/2018,30/01/2018,30/03/2018,08/03/2018,,,,,138,167,139,172,32,39,32,40,,,"CCGT D1_Integrated Programme Schedule;OEM (Engineering & Deliverables);BOILER AREA;STEAM GENERATOR BUILDING"
1.5.9.7.5-1,SI1HB-4E40,"(OTD-OS) ON SITE INLET & OUTLET DUCT",7112,"CCGTD1_IPS",TT_FinMile,"61577",-,-,-,100,TK_Complete,30/03/2018,08/03/2018,30/03/2018,08/03/2018,"SI1HB-4E42 FS","SI1HB-4E42","","",139,172,139,172,32,40,32,40,24,,"CCGT D1_Integrated Programme Schedule;OEM (Engineering & Deliverables);BOILER AREA;STEAM GENERATOR BUILDING;Steel Structure HRSG - Inlet & Outlet Duct",1,0,0.0,0.0,0.0004069176,0,1.0,0.0000812387,0.0068493151,0.0,0.0,0.0,0.0012870013,0.0,1.0,0.0
1.5.9.7.5-2,SI1HB-3E80,"(RFS) READY FOR SHIPMENT INLET & OUTLET DUCT",7112,"CCGTD1_IPS",TT_Mile,"61577",-,-,-,100,TK_Complete,26/03/2018,30/01/2018,26/03/2018,30/01/2018,"","","SI1HB-4E42 FS","SI1HB-4E42",138,167,138,167,32,39,32,39,23,,"CCGT D1_Integrated Programme Schedule;OEM (Engineering & Deliverables);BOILER AREA;STEAM GENERATOR BUILDING;Steel Structure HRSG - Inlet & Outlet Duct",0,1,0.0,0.0004069176,0.0,0,1.0,0.0000812387,0.0,0.0030769231,0.0,0.0010443864,0.0,0.0,1.0,0.0
1.5.9.7.5-3,SI1HB-4E42,"TRANSPORT INLET & OUTLET DUCT",7112,"CCGTD1_IPS",TT_Task,"61577",-,-,-,100,TK_Complete,26/03/2018,01/03/2018,30/03/2018,08/03/2018,"SI1HB-3E80 FS","SI1HB-3E80","SI1HB-4E40 FS","SI1HB-4E40",138,171,139,172,32,40,32,40,23,,"CCGT D1_Integrated Programme Schedule;OEM (Engineering & Deliverables);BOILER AREA;STEAM GENERATOR BUILDING;Steel Structure HRSG - Inlet & Outlet Duct",1,1,0.0000000414,0.0002034588,0.0002034588,4,0.6,0.0001503957,0.0068493151,0.0030769231,0.0000625,0.0005221932,0.0006435006,0.0089686099,0.6,0.0283369572
1.5.9.7.6,61576,"Steel Structure HRSG - Exhaust Stack",7112,"CCGTD1_IPS",WBS,"61570",,,,100,Complete,24/11/2016,24/11/2016,24/08/2018,30/08/2018,,,,,69,105,160,197,16,24,37,46,,,"CCGT D1_Integrated Programme Schedule;OEM (Engineering & Deliverables);BOILER AREA;STEAM GENERATOR BUILDING"
1.5.9.7.6-1,SI1HB-4D40,"(OTD-OS) ON SITE EXHAUST STACK HRSG",7112,"CCGTD1_IPS",TT_FinMile,"61576",-,-,-,100,TK_Complete,24/08/2018,30/08/2018,24/08/2018,30/08/2018,"SI1HB-4D42 FS","SI1HB-4D42","","",160,197,160,197,37,46,37,46,35,,"CCGT D1_Integrated Programme Schedule;OEM (Engineering & Deliverables);BOILER AREA;STEAM GENERATOR BUILDING;Steel Structure HRSG - Exhaust Stack",1,0,0.0,0.0,0.0028484232,0,1.0,0.0000812387,0.0068493151,0.0,0.0,0.0,0.009009009,0.0,1.0,0.0
1.5.9.7.6-2,SI1HB-3D05,"BASIC AND DETAIL DESIGN / ORDERING STEEL STRUCTURE HRSG - STACK",7112,"CCGTD1_IPS",TT_Task,"61576",-,-,-,100,TK_Complete,24/11/2016,24/11/2016,15/02/2017,28/07/2017,"SI1HA-2-85 FS","SI1HA-2-85","SI1HB-3D25 FS,SI1HB-2D60 FS,SI1HB-3-25# SS,SI1HB-3-25# FF","SI1HB-3D25,SI1HB-2D60,SI1HB-3-25#,SI1HB-3-25#",69,105,81,141,16,24,18,32,0,,"CCGT D1_Integrated Programme Schedule;OEM (Engineering & Deliverables);BOILER AREA;STEAM GENERATOR BUILDING;Steel Structure HRSG - Exhaust Stack",1,2,0.0000028983,0.0014242116,0.002034588,83,0.0,0.0000865833,0.0068493151,0.0061538462,0.004375,0.0036553525,0.0064350064,0.1860986547,0.0,0.0021899138
1.5.9.7.6-3,SI1HB-3D25,"MANUFACTURING STEEL STRUCTURE HRSG - STACK",7112,"CCGTD1_IPS",TT_Task,"61576",-,-,-,100,TK_Complete,16/12/2017,30/11/2017,13/06/2018,17/08/2018,"SI1HB-3D05 FS","SI1HB-3D05","SI1HB-3-25# SS,SI1HB-3-25# FF,SI1HB-3D80 FS","SI1HB-3-25#,SI1HB-3-25#,SI1HB-3D80",124,158,150,196,29,37,35,45,16,,"CCGT D1_Integrated Programme Schedule;OEM (Engineering & Deliverables);BOILER AREA;STEAM GENERATOR BUILDING;Steel Structure HRSG - Exhaust Stack",1,1,0.0000013663,0.0006103764,0.0022380468,179,0.0,0.0001549436,0.0068493151,0.0030769231,0.0020625,0.0015665796,0.0070785071,0.4013452915,0.0,0.0302004372
1.5.9.7.6-4,SI1HB-2D60,"FINAL INPUT FOR (MS3) STACK",7112,"CCGTD1_IPS",TT_FinMile,"61576",-,-,-,100,TK_Complete,02/03/2017,15/02/2017,02/03/2017,15/02/2017,"SI1HB-3D05 FS","SI1HB-3D05","SI1UHA2-60 FS","SI1UHA2-60",83,117,83,117,19,27,19,27,3,,"CCGT D1_Integrated Programme Schedule;OEM (Engineering & Deliverables);BOILER AREA;STEAM GENERATOR BUILDING;Steel Structure HRSG - Exhaust Stack",1,1,0.0000009109,0.0004069176,0.0022380468,0,1.0,0.0000812387,0.0068493151,0.0030769231,0.001375,0.0010443864,0.0070785071,0.0,1.0,0.0
1.5.9.7.6-5,SI1HB-3D80,"(RFS) READY FOR SHIPMENT STEEL STRUCTURE HRSG - STACK",7112,"CCGTD1_IPS",TT_Mile,"61576",-,-,-,100,TK_Complete,06/08/2018,18/08/2018,06/08/2018,18/08/2018,"SI1HB-3D25 FS","SI1HB-3D25","SI1HB-4D42 FS","SI1HB-4D42",157,196,157,196,36,45,36,45,34,,"CCGT D1_Integrated Programme Schedule;OEM (Engineering & Deliverables);BOILER AREA;STEAM GENERATOR BUILDING;Steel Structure HRSG - Exhaust Stack",1,1,0.0000009937,0.0004069176,0.0024415056,0,1.0,0.0000812387,0.0068493151,0.0030769231,0.0015,0.0010443864,0.0077220077,0.0,1.0,0.0
1.5.9.7.6-6,SI1HB-4D42,"TRANSPORT STEEL STRUCTURE HRSG - STACK",7112,"CCGTD1_IPS",TT_Task,"61576",-,-,-,100,TK_Complete,06/08/2018,21/08/2018,24/08/2018,30/08/2018,"SI1HB-3D80 FS","SI1HB-3D80","SI1HB-4D40 FS,SI1HB-4-25# FF,SI1HB-4-25# SS","SI1HB-4D40,SI1HB-4-25#,SI1HB-4-25#",157,196,160,197,36,45,37,46,34,,"CCGT D1_Integrated Programme Schedule;OEM (Engineering & Deliverables);BOILER AREA;STEAM GENERATOR BUILDING;Steel Structure HRSG - Exhaust Stack",1,1,0.0000005383,0.0002034588,0.0026449644,18,1.0,0.0001503957,0.0068493151,0.0030769231,0.0008125,0.0005221932,0.0083655084,0.0403587444,1.0,0.0283369572
1.5.9.7.7,61575,"Steel Structure HRSG - Secondary Steel",7112,"CCGTD1_IPS",WBS,"61570",,,,100,Complete,26/06/2017,15/06/2017,13/06/2018,31/05/2018,,,,,99,134,150,184,23,31,35,43,,,"CCGT D1_Integrated Programme Schedule;OEM (Engineering & Deliverables);BOILER AREA;STEAM GENERATOR BUILDING"
1.5.9.7.7-1,SI1HB-4C40,"(OTD-OS) ON SITE STEEL STRUCTURE HRSG - SECONDARY STEEL",7112,"CCGTD1_IPS",TT_FinMile,"61575",-,-,-,100,TK_Complete,13/06/2018,31/05/2018,13/06/2018,31/05/2018,"SI1HB-4C42 FS","SI1HB-4C42","","",150,184,150,184,35,43,35,43,30,,"CCGT D1_Integrated Programme Schedule;OEM (Engineering & Deliverables);BOILER AREA;STEAM GENERATOR BUILDING;Steel Structure HRSG - Secondary Steel",1,0,0.0,0.0,0.0036622584,0,1.0,0.0000812387,0.0068493151,0.0,0.0,0.0,0.0115830116,0.0,1.0,0.0
1.5.9.7.7-2,SI1HB-3C25,"BASIC AND  DETAIL DESIGN, MANUFACTURING STEEL STRUCTURE HRSG - SECONDARY STEEL",7112,"CCGTD1_IPS",TT_Task,"61575",-,-,-,100,TK_Complete,26/06/2017,15/06/2017,25/12/2017,04/04/2018,"SI1HB-3A25 SS,SI1HA-2-85 FS","SI1HB-3A25,SI1HA-2-85","SI1HB-3C80 FS,SI1HB-3-25# FF,SI1HB-3-25# SS","SI1HB-3C80,SI1HB-3-25#,SI1HB-3-25#",99,134,125,176,23,31,29,41,8,,"CCGT D1_Integrated Programme Schedule;OEM (Engineering & Deliverables);BOILER AREA;STEAM GENERATOR BUILDING;Steel Structure HRSG - Secondary Steel",2,1,0.0000018632,0.0006103764,0.003051882,182,0.0,0.0002798117,0.0136986301,0.0030769231,0.0028125,0.0015665796,0.0096525097,0.4080717489,0.0,0.0813649024
1.5.9.7.7-3,SI1HB-4C42,"TRANSPORT STEEL STRUCTURE HRSG - SECONDARY STEEL",7112,"CCGTD1_IPS",TT_Task,"61575",-,-,-,100,TK_Complete,06/06/2018,12/05/2018,13/06/2018,31/05/2018,"SI1HB-3C80 FS","SI1HB-3C80","SI1HB-4-25# FF,SI1HB-4C40 FS,SI1HB-4-25# SS","SI1HB-4-25#,SI1HB-4C40,SI1HB-4-25#",149,182,150,184,34,42,35,43,30,,"CCGT D1_Integrated Programme Schedule;OEM (Engineering & Deliverables);BOILER AREA;STEAM GENERATOR BUILDING;Steel Structure HRSG - Secondary Steel",1,1,0.0000007039,0.0002034588,0.0034587996,7,0.0,0.0001503957,0.0068493151,0.0030769231,0.0010625,0.0005221932,0.0109395109,0.0156950673,0.0,0.0283369572
1.5.9.7.7-4,SI1HB-3C80,"(RFS) READY FOR SHIPMENT STEEL STRUCTURE HRSG - SECONDARY STEEL",7112,"CCGTD1_IPS",TT_Mile,"61575",-,-,-,100,TK_Complete,06/06/2018,13/04/2018,06/06/2018,13/04/2018,"SI1HB-3C25 FS","SI1HB-3C25","SI1HB-4C42 FS","SI1HB-4C42",149,178,149,178,34,41,34,41,30,,"CCGT D1_Integrated Programme Schedule;OEM (Engineering & Deliverables);BOILER AREA;STEAM GENERATOR BUILDING;Steel Structure HRSG - Secondary Steel",1,1,0.0000013249,0.0004069176,0.0032553408,0,1.0,0.0000812387,0.0068493151,0.0030769231,0.002,0.0010443864,0.0102960103,0.0,1.0,0.0
1.5.9.7.8,61574,"Steel Structure HRSG - Main Frames (incl. Casing)",7112,"CCGTD1_IPS",WBS,"61570",,,,100,Complete,03/11/2016,03/11/2016,30/03/2018,08/03/2018,,,,,66,102,139,172,15,24,32,40,,,"CCGT D1_Integrated Programme Schedule;OEM (Engineering & Deliverables);BOILER AREA;STEAM GENERATOR BUILDING"
1.5.9.7.8-1,SI1HB-3A80,"(RFS) READY FOR SHIPMENT MAIN STEEL STRUCTURE HRSG (Main Frame/Casing)",7112,"CCGTD1_IPS",TT_Mile,"61574",-,-,-,100,TK_Complete,03/03/2018,31/01/2018,03/03/2018,31/01/2018,"SI1HB-3A25 FS","SI1HB-3A25","SI1HB-4A42 FS","SI1HB-4A42",135,167,135,167,31,39,31,39,21,,"CCGT D1_Integrated Programme Schedule;OEM (Engineering & Deliverables);BOILER AREA;STEAM GENERATOR BUILDING;Steel Structure HRSG - Main Frames (incl. Casing)",1,1,0.000000414,0.0004069176,0.001017294,0,1.0,0.0000812387,0.0068493151,0.0030769231,0.000625,0.0010443864,0.0032175032,0.0,1.0,0.0
1.5.9.7.8-2,SI1HB-4A42,"TRANSPORT MAIN STEEL STRUCTURE HRSG (Main Frame/Casing))",7112,"CCGTD1_IPS",TT_Task,"61574",-,-,-,100,TK_Complete,26/03/2018,01/03/2018,30/03/2018,08/03/2018,"SI1HB-3A80 FS","SI1HB-3A80","SI1HB-4-25# FF,SI1HB-4A44 FS,SI1HB-4-25# SS","SI1HB-4-25#,SI1HB-4A44,SI1HB-4-25#",138,171,139,172,32,40,32,40,23,,"CCGT D1_Integrated Programme Schedule;OEM (Engineering & Deliverables);BOILER AREA;STEAM GENERATOR BUILDING;Steel Structure HRSG - Main Frames (incl. Casing)",1,1,0.0000002484,0.0002034588,0.0012207528,4,0.6,0.0001503957,0.0068493151,0.0030769231,0.000375,0.0005221932,0.0038610039,0.0089686099,0.6,0.0283369572
1.5.9.7.8-3,SI1HB-3A05,"BASIC DESIGN MAIN STEEL STRUCTURE HRSG",7112,"CCGTD1_IPS",TT_Task,"61574",-,-,-,100,TK_Complete,03/11/2016,03/11/2016,07/02/2017,15/02/2017,"","","SI1HB-3-25# FF,SI1HB-3A25 FS,SI1HB-3-25# SS,SI1HB-3-25# FS,SI1HA-2A60 FS","SI1HB-3-25#,SI1HB-3A25,SI1HB-3-25#,SI1HB-3-25#,SI1HA-2A60",66,102,79,117,15,24,18,27,0,,"CCGT D1_Integrated Programme Schedule;OEM (Engineering & Deliverables);BOILER AREA;STEAM GENERATOR BUILDING;Steel Structure HRSG - Main Frames (incl. Casing)",0,2,0.0,0.0026449644,0.0,96,0.0,0.0000812387,0.0,0.0061538462,0.0,0.0067885117,0.0,0.2152466368,0.0,0.0
1.5.9.7.8-4,SI1HA-2A15,"(MH3) FINAL DIMENSIONS AND LOADS AVAILABLE FOR HRSG",7112,"CCGTD1_IPS",TT_FinMile,"61574",-,-,-,100,TK_Complete,14/02/2017,31/01/2017,14/02/2017,31/01/2017,"SI-3412-20 FS","SI-3412-20","SI1HB-3A25 FS,SI1HB-3-25# FS,SI1HB-3-25# FF","SI1HB-3A25,SI1HB-3-25#,SI1HB-3-25#",80,115,80,115,18,26,18,26,2,,"CCGT D1_Integrated Programme Schedule;OEM (Engineering & Deliverables);BOILER AREA;STEAM GENERATOR BUILDING;Steel Structure HRSG - Main Frames (incl. Casing)",1,1,0.0000008281,0.002034588,0.0004069176,0,1.0,0.0000812387,0.0068493151,0.0030769231,0.00125,0.0052219321,0.0012870013,0.0,1.0,0.0
1.5.9.7.8-5,SI1HB-3A25,"DETAIL DESIGN, MANUFACTURING MAIN STEEL STRUCTURE HRSG (Main Frame/Casing)",7112,"CCGTD1_IPS",TT_Task,"61574",-,-,-,100,TK_Complete,01/03/2017,16/02/2017,30/12/2017,30/01/2018,"SI1HA-2A15 FS,SI1HB-3A05 FS","SI1HA-2A15,SI1HB-3A05","SI1HB-3A80 FS,SI1HB-3C25 SS,SI1HB-3A85 SS","SI1HB-3A80,SI1HB-3C25,SI1HB-3A85",83,117,126,167,19,27,29,39,2,,"CCGT D1_Integrated Programme Schedule;OEM (Engineering & Deliverables);BOILER AREA;STEAM GENERATOR BUILDING;Steel Structure HRSG - Main Frames (incl. Casing)",2,3,0.0000014905,0.0018311292,0.0008138352,304,0.0,0.0002195528,0.0136986301,0.0092307692,0.00225,0.0046997389,0.0025740026,0.6816143498,0.0,0.0566739144
1.5.9.7.8-6,SI1HA-2A05,"GENERAL ARRANGMENT DWGS PRELIMINARY UHA",7112,"CCGTD1_IPS",TT_Mile,"61574",-,-,-,100,TK_Complete,03/11/2016,03/11/2016,03/11/2016,03/11/2016,"SI1HA-2-85 FS","SI1HA-2-85","","",66,102,66,102,15,24,15,24,0,,"CCGT D1_Integrated Programme Schedule;OEM (Engineering & Deliverables);BOILER AREA;STEAM GENERATOR BUILDING;Steel Structure HRSG - Main Frames (incl. Casing)",1,0,0.0,0.0,0.002034588,0,1.0,0.0000812387,0.0068493151,0.0,0.0,0.0,0.0064350064,0.0,1.0,0.0
1.5.9.7.8-7,SI1HB-3A85,"EMBEDDED PARTS READY FOR SHIPMENT (Incl. STACK)",7112,"CCGTD1_IPS",TT_Mile,"61574",-,-,-,100,TK_Complete,26/08/2017,16/08/2017,26/08/2017,16/08/2017,"SI1HB-3A25 SS","SI1HB-3A25","SI1HB-3A90 FS","SI1HB-3A90",108,143,108,143,25,33,25,33,10,,"CCGT D1_Integrated Programme Schedule;OEM (Engineering & Deliverables);BOILER AREA;STEAM GENERATOR BUILDING;Steel Structure HRSG - Main Frames (incl. Casing)",1,1,0.000000207,0.0002034588,0.001017294,0,1.0,0.0000812387,0.0068493151,0.0030769231,0.0003125,0.0005221932,0.0032175032,0.0,1.0,0.0
1.5.9.7.8-8,SI1HB-3A90,"(OTD-OS) HRSG EMBEDDED PARTS ON SITE (Incl. STACK)",7112,"CCGTD1_IPS",TT_FinMile,"61574",-,-,-,100,TK_Complete,26/09/2017,28/08/2017,26/09/2017,28/08/2017,"SI1HB-3A85 FS","SI1HB-3A85","","",112,145,112,145,26,33,26,33,12,,"CCGT D1_Integrated Programme Schedule;OEM (Engineering & Deliverables);BOILER AREA;STEAM GENERATOR BUILDING;Steel Structure HRSG - Main Frames (incl. Casing)",1,0,0.0,0.0,0.0012207528,0,1.0,0.0000812387,0.0068493151,0.0,0.0,0.0,0.0038610039,0.0,1.0,0.0
1.5.9.7.8-9,SI1HB-4A44,"(OTD-OS) ON SITE MAIN STEEL STRUCTURE HRSG (Main Frame/Casing)",7112,"CCGTD1_IPS",TT_FinMile,"61574",-,-,-,100,TK_Complete,30/03/2018,08/03/2018,30/03/2018,08/03/2018,"SI1HB-4A42 FS","SI1HB-4A42","","",139,172,139,172,32,40,32,40,24,,"CCGT D1_Integrated Programme Schedule;OEM (Engineering & Deliverables);BOILER AREA;STEAM GENERATOR BUILDING;Steel Structure HRSG - Main Frames (incl. Casing)",1,0,0.0,0.0,0.0014242116,0,1.0,0.0000812387,0.0068493151,0.0,0.0,0.0,0.0045045045,0.0,1.0,0.0
1.5.9.7.8-10,SI1HA-2A60,"(DF) FINAL INPUT FOR MS3 HRSG",7112,"CCGTD1_IPS",TT_FinMile,"61574",-,-,-,100,TK_Complete,28/02/2017,15/02/2017,28/02/2017,15/02/2017,"SI1HB-3A05 FS","SI1HB-3A05","SI1UHA2-60 FS","SI1UHA2-60",82,117,82,117,19,27,19,27,2,,"CCGT D1_Integrated Programme Schedule;OEM (Engineering & Deliverables);BOILER AREA;STEAM GENERATOR BUILDING;Steel Structure HRSG - Main Frames (incl. Casing)",1,1,0.0000000828,0.0004069176,0.0002034588,0,1.0,0.0000812387,0.0068493151,0.0030769231,0.000125,0.0010443864,0.0006435006,0.0,1.0,0.0
1.5.9.7.9,61573,"Basic Design + Ordering HRSG",7112,"CCGTD1_IPS",WBS,"61570",,,,100,Complete,02/07/2016,09/07/2016,14/01/2017,19/12/2016,,,,,48,86,76,109,11,20,17,25,,,"CCGT D1_Integrated Programme Schedule;OEM (Engineering & Deliverables);BOILER AREA;STEAM GENERATOR BUILDING"
1.5.9.7.9-1,SI1HA-2-78,"HRSG OFFER AVAILABLE",7112,"CCGTD1_IPS",TT_Mile,"61573",-,-,-,100,TK_Complete,05/11/2016,10/09/2016,05/11/2016,10/09/2016,"SI1HA-2-77 FS,SI-HA-2-75 FS","SI1HA-2-77,SI-HA-2-75","SI1HA-2-10 FS","SI1HA-2-10",66,95,66,95,15,22,15,22,0,,"CCGT D1_Integrated Programme Schedule;OEM (Engineering & Deliverables);BOILER AREA;STEAM GENERATOR BUILDING;Basic Design + Ordering HRSG",2,1,0.0000176795,0.0124109868,0.0014242116,0,1.0,0.0000812387,0.0136986301,0.0030769231,0.0266875,0.0318537859,0.0045045045,0.0,1.0,0.0
1.5.9.7.9-2,SI1HA-2-73,"COATING INSTRUCTION",7112,"CCGTD1_IPS",TT_FinMile,"61573",-,-,-,100,TK_Complete,28/10/2016,02/09/2016,28/10/2016,02/09/2016,"","","SI1HA-2-77 FF","SI1HA-2-77",65,94,65,94,15,21,15,21,0,,"CCGT D1_Integrated Programme Schedule;OEM (Engineering & Deliverables);BOILER AREA;STEAM GENERATOR BUILDING;Basic Design + Ordering HRSG",0,1,0.0,0.0128179044,0.0,0,1.0,0.0000812387,0.0,0.0030769231,0.0,0.0328981723,0.0,0.0,1.0,0.0
1.5.9.7.9-3,SI1HA-2-72,"PROJECT SPECIFIC ADAPTION OF HRSG SPECIFICATION",7112,"CCGTD1_IPS",TT_Task,"61573",-,-,-,100,TK_Complete,02/07/2016,09/07/2016,28/07/2016,05/08/2016,"","","SI1HA-2-77 FS,SI-3022-05 FS,SI1HA-2-10# SS","SI1HA-2-77,SI-3022-05,SI1HA-2-10#",48,86,52,90,11,20,12,21,0,,"CCGT D1_Integrated Programme Schedule;OEM (Engineering & Deliverables);BOILER AREA;STEAM GENERATOR BUILDING;Basic Design + Ordering HRSG",0,2,0.0,0.0130213632,0.0,26,1.0,0.0000812387,0.0,0.0061538462,0.0,0.0334203655,0.0,0.0582959641,1.0,0.0
1.5.9.7.9-4,SI1HA-2-85,"PARTIAL ORDER PLACED HRSG",7112,"CCGTD1_IPS",TT_Mile,"61573",-,-,-,100,TK_Complete,03/11/2016,03/11/2016,03/11/2016,03/11/2016,"SI1HA-2-10 FS","SI1HA-2-10","SI-HA-2-86 FS,SI1CJF2-80 FS,SI1HA-2-00 FS,SI-HA-2-85& SS,SI1HA-2A05 FS,SI1HA-3-25# FS,SI1HB-3D05 FS,SI1HA-3-25# FF,SI1HA-2A11 FS,SI1HA-3D25 FS,SI1LBH2D80 FS,SI1HB-3C25 FS,SI1HA-2E15 FS","SI-HA-2-86,SI1CJF2-80,SI1HA-2-00,SI-HA-2-85&,SI1HA-2A05,SI1HA-3-25#,SI1HB-3D05,SI1HA-3-25#,SI1HA-2A11,SI1HA-3D25,SI1LBH2D80,SI1HB-3C25,SI1HA-2E15",66,102,66,102,15,24,15,24,0,,"CCGT D1_Integrated Programme Schedule;OEM (Engineering & Deliverables);BOILER AREA;STEAM GENERATOR BUILDING;Basic Design + Ordering HRSG",1,11,0.0000219855,0.0120040692,0.0018311292,0,1.0,0.0000812387,0.0068493151,0.0338461538,0.0331875,0.0308093995,0.0057915058,0.0,1.0,0.0
1.5.9.7.9-5,SI1HA-2-77,"OFFER PREPARATION BY HRSG SUPPLIER",7112,"CCGTD1_IPS",TT_Task,"61573",-,-,-,100,TK_Complete,01/10/2016,06/08/2016,03/11/2016,09/09/2016,"SI-HA-2-11 FS,SI-3412-40 FS,SI-3022-05 FS,SI1HA-2-73 FF,SI1HA-2-72 FS","SI-HA-2-11,SI-3412-40,SI-3022-05,SI1HA-2-73,SI1HA-2-72","SI1HA-2-78 FS","SI1HA-2-78",61,90,66,95,14,21,15,22,0,,"CCGT D1_Integrated Programme Schedule;OEM (Engineering & Deliverables);BOILER AREA;STEAM GENERATOR BUILDING;Basic Design + Ordering HRSG",5,1,0.0000128352,0.0126144456,0.0012207528,33,1.0,0.0004270238,0.0342465753,0.0030769231,0.019375,0.0323759791,0.0038610039,0.0739910314,1.0,0.141684786
1.5.9.7.9-6,SI1HA-2-10,"TECHNICAL CLARIFICATION WITH HRSG SUPPLIER",7112,"CCGTD1_IPS",TT_Task,"61573",-,-,-,100,TK_Complete,05/11/2016,10/09/2016,24/11/2016,30/09/2016,"SI1HA-2-78 FS","SI1HA-2-78","SI1HA-2-10# FF,SI1HA-2-85 FS","SI1HA-2-10#,SI1HA-2-85",66,95,69,98,15,22,16,22,0,,"CCGT D1_Integrated Programme Schedule;OEM (Engineering & Deliverables);BOILER AREA;STEAM GENERATOR BUILDING;Basic Design + Ordering HRSG",1,1,0.0000198739,0.012207528,0.0016276704,19,0.8,0.0001503957,0.0068493151,0.0030769231,0.03,0.0313315927,0.0051480051,0.0426008969,0.8,0.0283369572
1.5.9.7.9-7,SI1HA-2-87,"ORDER PLACED HRSG",7112,"CCGTD1_IPS",TT_Mile,"61573",-,-,-,100,TK_Complete,14/01/2017,19/12/2016,14/01/2017,19/12/2016,"SI----2-007 FS","SI----2-007","","",76,109,76,109,17,25,17,25,1,,"CCGT D1_Integrated Programme Schedule;OEM (Engineering & Deliverables);BOILER AREA;STEAM GENERATOR BUILDING;Basic Design + Ordering HRSG",1,0,0.0,0.0,0.0002034588,0,1.0,0.0000812387,0.0068493151,0.0,0.0,0.0,0.0006435006,0.0,1.0,0.0
1.5.9.7.10,61572,"HRSG",7112,"CCGTD1_IPS",WBS,"61570",,,,100,Complete,03/11/2016,03/11/2016,15/08/2018,30/08/2018,,,,,66,102,159,197,15,24,37,46,,,"CCGT D1_Integrated Programme Schedule;OEM (Engineering & Deliverables);BOILER AREA;STEAM GENERATOR BUILDING"
1.5.9.7.10-1,SI1HA-2-00,"PRELIMINARY ERECTION CONCEPT HRSG",7112,"CCGTD1_IPS",TT_Mile,"61572",-,-,-,100,TK_Complete,01/04/2017,18/03/2017,01/04/2017,18/03/2017,"SI1HA-2-85 FS","SI1HA-2-85","SI1HA-2-01 FS","SI1HA-2-01",87,122,87,122,20,28,20,28,4,,"CCGT D1_Integrated Programme Schedule;OEM (Engineering & Deliverables);BOILER AREA;STEAM GENERATOR BUILDING;HRSG",1,1,0.000000414,0.0002034588,0.002034588,0,1.0,0.0000812387,0.0068493151,0.0030769231,0.000625,0.0005221932,0.0064350064,0.0,1.0,0.0
1.5.9.7.10-2,SI1HA-2-01,"FINAL ERECTION CONCEPT HRSG",7112,"CCGTD1_IPS",TT_Mile,"61572",-,-,-,100,TK_Complete,01/06/2017,13/05/2017,01/06/2017,13/05/2017,"SI1HA-2-00 FS","SI1HA-2-00","","",96,130,96,130,22,30,22,30,6,,"CCGT D1_Integrated Programme Schedule;OEM (Engineering & Deliverables);BOILER AREA;STEAM GENERATOR BUILDING;HRSG",1,0,0.0,0.0,0.0022380468,0,1.0,0.0000812387,0.0068493151,0.0,0.0,0.0,0.0070785071,0.0,1.0,0.0
1.5.9.7.11,61571,"Concrete / Formwork / Reinforcement UHA",7112,"CCGTD1_IPS",WBS,"61570",,,,100,Complete,15/02/2017,02/02/2017,21/03/2017,03/03/2017,,,,,81,115,85,120,18,27,20,28,,,"CCGT D1_Integrated Programme Schedule;OEM (Engineering & Deliverables);BOILER AREA;STEAM GENERATOR BUILDING"
1.5.9.7.11-1,SI1UHA2-45,"PREPARATION BASIC BUILDING DWGS  UHA",7112,"CCGTD1_IPS",TT_Task,"61571",-,-,-,100,TK_Complete,15/02/2017,02/02/2017,21/03/2017,03/03/2017,"SI1UHA2-60 FF,SI-3412-20 FS","SI1UHA2-60,SI-3412-20","","",81,115,85,120,18,27,20,28,2,,"CCGT D1_Integrated Programme Schedule;OEM (Engineering & Deliverables);BOILER AREA;STEAM GENERATOR BUILDING;Concrete / Formwork / Reinforcement UHA",2,0,0.0,0.0,0.0034587996,34,1.0,0.0001538896,0.0136986301,0.0,0.0,0.0,0.0109395109,0.0762331839,1.0,0.029768542
1.5.9.7.11-2,SI1UHA2-60,"(MS3) CONCRETE STRUCTURE FINAL DIMENSIONS LOADS AVAILABLE UHA",7112,"CCGTD1_IPS",TT_FinMile,"61571",-,-,-,100,TK_Complete,02/03/2017,15/02/2017,02/03/2017,15/02/2017,"SI1HA-2A60 FS,SI1HB-2D60 FS","SI1HA-2A60,SI1HB-2D60","SI1UHA2-45 FF","SI1UHA2-45",83,117,83,117,19,27,19,27,3,,"CCGT D1_Integrated Programme Schedule;OEM (Engineering & Deliverables);BOILER AREA;STEAM GENERATOR BUILDING;Concrete / Formwork / Reinforcement UHA",2,1,0.0000005797,0.0002034588,0.0028484232,0,1.0,0.0000812387,0.0136986301,0.0030769231,0.000875,0.0005221932,0.009009009,0.0,1.0,0.0
1.5.9.8,61566,"STRUCTURE FOR GAS TRANSFER, CONVERSION & STORAGE",7112,"CCGTD1_IPS",WBS,"61565",,,,100,Complete,01/02/2017,21/01/2017,04/07/2018,29/05/2018,,,,,79,114,153,184,18,26,35,43,,,"CCGT D1_Integrated Programme Schedule;OEM (Engineering & Deliverables);BOILER AREA"
1.5.9.8.1,61569,"Fuel Gas Supply EK incl. Common Part (00UEN01&02) / Unit Part (10UEN)",7112,"CCGTD1_IPS",WBS,"61566",,,,100,Complete,01/02/2017,21/01/2017,04/07/2018,29/05/2018,,,,,79,114,153,184,18,26,35,43,,,"CCGT D1_Integrated Programme Schedule;OEM (Engineering & Deliverables);BOILER AREA;STRUCTURE FOR GAS TRANSFER, CONVERSION & STORAGE"
1.5.9.8.1-1,SI-EK-2-60,"(DF) FINAL INPUT FOR MS3 FUEL GAS SUPPLY SYSTEM EK/EKC",7112,"CCGTD1_IPS",TT_FinMile,"61569",-,-,-,100,TK_Complete,25/06/2017,09/06/2017,25/06/2017,09/06/2017,"SI-EK-2-85 FS","SI-EK-2-85","SI0UEN2-60 FS,SI1UEN2-60 FS","SI0UEN2-60,SI1UEN2-60",99,134,99,134,23,31,23,31,7,,"CCGT D1_Integrated Programme Schedule;OEM (Engineering & Deliverables);BOILER AREA;STRUCTURE FOR GAS TRANSFER, CONVERSION & STORAGE;Fuel Gas Supply EK incl. Common Part (00UEN01&02) / Unit Part (10UEN)",1,2,0.0000006211,0.001017294,0.0006103764,0,1.0,0.0000812387,0.0068493151,0.0061538462,0.0009375,0.0026109661,0.0019305019,0.0,1.0,0.0
1.5.9.8.1-2,SI-EK-3-25,"DETAIL DESIGN, MANUFACTURING FUEL GAS SUPPLY SYSTEM EK/EKC",7112,"CCGTD1_IPS",TT_Task,"61569",-,-,-,100,TK_Complete,01/05/2017,28/04/2017,25/10/2017,24/12/2017,"SI-EK-2-85 FS","SI-EK-2-85","SI-EK-3-55 FS","SI-EK-3-55",91,128,117,162,21,29,27,37,4,,"CCGT D1_Integrated Programme Schedule;OEM (Engineering & Deliverables);BOILER AREA;STRUCTURE FOR GAS TRANSFER, CONVERSION & STORAGE;Fuel Gas Supply EK incl. Common Part (00UEN01&02) / Unit Part (10UEN)",1,1,0.0000004968,0.0008138352,0.0006103764,177,0.0,0.0001503957,0.0068493151,0.0030769231,0.00075,0.0020887728,0.0019305019,0.3968609865,0.0,0.0283369572
1.5.9.8.1-3,SI-EK-4-25,"TRANSPORT FUEL GAS SUPPLY SYSTEM EK/EKC",7112,"CCGTD1_IPS",TT_Task,"61569",-,-,-,100,TK_Complete,06/05/2018,22/04/2018,04/07/2018,29/05/2018,"SI-EK-3-80 FS","SI-EK-3-80","SI-EK-4-46 FS","SI-EK-4-46",144,179,153,184,33,41,35,43,27,,"CCGT D1_Integrated Programme Schedule;OEM (Engineering & Deliverables);BOILER AREA;STRUCTURE FOR GAS TRANSFER, CONVERSION & STORAGE;Fuel Gas Supply EK incl. Common Part (00UEN01&02) / Unit Part (10UEN)",1,1,0.0000002484,0.0002034588,0.0012207528,59,1.0,0.0001503957,0.0068493151,0.0030769231,0.000375,0.0005221932,0.0038610039,0.1322869955,1.0,0.0283369572
1.5.9.8.1-4,SI-EK-4-46,"(OTD-OS) ON SITE FUEL GAS SUPPLY SYSTEM EK/EKC",7112,"CCGTD1_IPS",TT_FinMile,"61569",-,-,-,100,TK_Complete,04/07/2018,29/05/2018,04/07/2018,29/05/2018,"SI-EK-4-25 FS","SI-EK-4-25","","",153,184,153,184,35,43,35,43,32,,"CCGT D1_Integrated Programme Schedule;OEM (Engineering & Deliverables);BOILER AREA;STRUCTURE FOR GAS TRANSFER, CONVERSION & STORAGE;Fuel Gas Supply EK incl. Common Part (00UEN01&02) / Unit Part (10UEN)",1,0,0.0,0.0,0.0014242116,0,1.0,0.0000812387,0.0068493151,0.0,0.0,0.0,0.0045045045,0.0,1.0,0.0
1.5.9.8.1-5,SI-EK-3-80,"(RFS) READY FOR SHIPMENT GAS SYSTEM EK/EKC",7112,"CCGTD1_IPS",TT_FinMile,"61569",-,-,-,100,TK_Complete,05/05/2018,29/03/2018,05/05/2018,29/03/2018,"SI-EK-3-55 FS","SI-EK-3-55","SI-EK-4-25 FS","SI-EK-4-25",144,175,144,175,33,41,33,41,27,,"CCGT D1_Integrated Programme Schedule;OEM (Engineering & Deliverables);BOILER AREA;STRUCTURE FOR GAS TRANSFER, CONVERSION & STORAGE;Fuel Gas Supply EK incl. Common Part (00UEN01&02) / Unit Part (10UEN)",1,1,0.000000414,0.0004069176,0.001017294,0,1.0,0.0000812387,0.0068493151,0.0030769231,0.000625,0.0010443864,0.0032175032,0.0,1.0,0.0
1.5.9.8.1-6,SI-EK-2-80,"QUOTATION STAGE FUEL GAS SUPPLY SYSTEM EK/EKC",7112,"CCGTD1_IPS",TT_Task,"61569",-,-,-,100,TK_Complete,01/02/2017,21/01/2017,28/03/2017,27/04/2017,"SI-3062-17 FS","SI-3062-17","SI-EK-2-85 FS","SI-EK-2-85",79,114,86,127,18,26,20,29,2,,"CCGT D1_Integrated Programme Schedule;OEM (Engineering & Deliverables);BOILER AREA;STRUCTURE FOR GAS TRANSFER, CONVERSION & STORAGE;Fuel Gas Supply EK incl. Common Part (00UEN01&02) / Unit Part (10UEN)",1,1,0.0000005383,0.0026449644,0.0002034588,55,0.0,0.0000891301,0.0068493151,0.0030769231,0.0008125,0.0067885117,0.0006435006,0.1233183857,0.0,0.0032334702
1.5.9.8.1-7,SI-EK-2-85,"ORDER PLACED FUEL GAS SUPPLY SYSTEM EK/EKC",7112,"CCGTD1_IPS",TT_Mile,"61569",-,-,-,100,TK_Complete,14/05/2017,28/04/2017,14/05/2017,28/04/2017,"SI-EK-2-80 FS","SI-EK-2-80","SI--EK-3-25# FS,SI-EK-3-25 FS,SI-EK-2-60 FS,SI-EK-2-65 FS","SI--EK-3-25#,SI-EK-3-25,SI-EK-2-60,SI-EK-2-65",93,128,93,128,21,29,21,29,5,,"CCGT D1_Integrated Programme Schedule;OEM (Engineering & Deliverables);BOILER AREA;STRUCTURE FOR GAS TRANSFER, CONVERSION & STORAGE;Fuel Gas Supply EK incl. Common Part (00UEN01&02) / Unit Part (10UEN)",1,3,0.0000009937,0.0024415056,0.0004069176,0,1.0,0.0000812387,0.0068493151,0.0092307692,0.0015,0.0062663185,0.0012870013,0.0,1.0,0.0
1.5.9.8.1-8,SI-EK-2-65,"(DF) FINAL INPUT FOR M2 GAS SYSTEM EK/EKC",7112,"CCGTD1_IPS",TT_FinMile,"61569",-,-,-,100,TK_Complete,31/05/2017,28/04/2017,31/05/2017,28/04/2017,"SI-EK-2-85 FS","SI-EK-2-85","","",96,128,96,128,22,29,22,29,6,,"CCGT D1_Integrated Programme Schedule;OEM (Engineering & Deliverables);BOILER AREA;STRUCTURE FOR GAS TRANSFER, CONVERSION & STORAGE;Fuel Gas Supply EK incl. Common Part (00UEN01&02) / Unit Part (10UEN)",1,0,0.0,0.0,0.0006103764,0,1.0,0.0000812387,0.0068493151,0.0,0.0,0.0,0.0019305019,0.0,1.0,0.0
1.5.9.8.1-9,SI-EK-2-04,"P&IDs INPUT AGREED WITH BOP-PIPING GAS SYSTEM EK/EKC",7112,"CCGTD1_IPS",TT_Mile,"61569",-,-,-,100,TK_Complete,01/02/2017,21/01/2017,01/02/2017,21/01/2017,"","","","",79,114,79,114,18,26,18,26,2,,"CCGT D1_Integrated Programme Schedule;OEM (Engineering & Deliverables);BOILER AREA;STRUCTURE FOR GAS TRANSFER, CONVERSION & STORAGE;Fuel Gas Supply EK incl. Common Part (00UEN01&02) / Unit Part (10UEN)",0,0,0.0,0.0,0.0,0,1.0,0.0000812387,0.0,0.0,0.0,0.0,0.0,0.0,1.0,0.0
1.5.9.8.1-10,SI-EK-3-55,"PRE ERECTION GAS SYSTEM/ PREHEATER EK/EKC",7112,"CCGTD1_IPS",TT_Task,"61569",-,-,-,100,TK_Complete,16/02/2018,06/01/2018,02/07/2018,29/03/2018,"SI-EK-3-25 FS","SI-EK-3-25","SI--EK-3-25# FF,SI-EK-3-80 FS","SI--EK-3-25#,SI-EK-3-80",133,164,152,175,31,38,35,41,18,,"CCGT D1_Integrated Programme Schedule;OEM (Engineering & Deliverables);BOILER AREA;STRUCTURE FOR GAS TRANSFER, CONVERSION & STORAGE;Fuel Gas Supply EK incl. Common Part (00UEN01&02) / Unit Part (10UEN)",1,1,0.0000004968,0.0006103764,0.0008138352,136,1.0,0.000209244,0.0068493151,0.0030769231,0.00075,0.0015665796,0.0025740026,0.3049327354,1.0,0.0524499399
1.5.9.8.2,61568,"Cable Support System BZP",7112,"CCGTD1_IPS",WBS,"61566",,,,100,Complete,25/07/2017,22/07/2017,04/09/2017,01/09/2017,,,,,103,140,109,146,24,32,25,34,,,"CCGT D1_Integrated Programme Schedule;OEM (Engineering & Deliverables);BOILER AREA;STRUCTURE FOR GAS TRANSFER, CONVERSION & STORAGE"
1.5.9.8.2-1,SI1BZP2F30,"DETAIL DESIGN CABLE SUPPORT SYSTEM 10UEN",7112,"CCGTD1_IPS",TT_Task,"61568",-,-,-,100,TK_Complete,25/07/2017,22/07/2017,04/09/2017,01/09/2017,"SI1UEN2-45 FS","SI1UEN2-45","","",103,140,109,146,24,32,25,34,9,,"CCGT D1_Integrated Programme Schedule;OEM (Engineering & Deliverables);BOILER AREA;STRUCTURE FOR GAS TRANSFER, CONVERSION & STORAGE;Cable Support System BZP",1,0,0.0,0.0,0.0016276704,41,1.0,0.0002122171,0.0068493151,0.0,0.0,0.0,0.0051480051,0.0919282511,1.0,0.0536681293
1.5.9.8.3,61567,"Concrete / Formwork / Reinforcement 10UEN",7112,"CCGTD1_IPS",WBS,"61566",,,,100,Complete,26/06/2017,17/06/2017,30/07/2017,30/06/2017,,,,,99,135,104,137,23,31,24,31,,,"CCGT D1_Integrated Programme Schedule;OEM (Engineering & Deliverables);BOILER AREA;STRUCTURE FOR GAS TRANSFER, CONVERSION & STORAGE"
1.5.9.8.3-1,SI1UEN2-60,"(MS3) CONCRETE STRUCTURE FINAL DIMENSIONS LOADS AVAILABLE 10UEN",7112,"CCGTD1_IPS",TT_FinMile,"61567",-,-,-,100,TK_Complete,25/07/2017,25/06/2017,25/07/2017,25/06/2017,"SI-EK-2-60 FS","SI-EK-2-60","SI1UEN2-45 FF","SI1UEN2-45",103,136,103,136,24,31,24,31,9,,"CCGT D1_Integrated Programme Schedule;OEM (Engineering & Deliverables);BOILER AREA;STRUCTURE FOR GAS TRANSFER, CONVERSION & STORAGE;Concrete / Formwork / Reinforcement 10UEN",1,1,0.0000003312,0.0004069176,0.0008138352,0,1.0,0.0000812387,0.0068493151,0.0030769231,0.0005,0.0010443864,0.0025740026,0.0,1.0,0.0
1.5.9.8.3-2,SI1UEN2-45,"PREPARATION BASIC BUILDING DWGS  10UEN",7112,"CCGTD1_IPS",TT_Task,"61567",-,-,-,100,TK_Complete,26/06/2017,17/06/2017,30/07/2017,30/06/2017,"SI-3412-20 FS,SI1UEN2-60 FF","SI-3412-20,SI1UEN2-60","SI1BZP2F30 FS","SI1BZP2F30",99,135,104,137,23,31,24,31,8,,"CCGT D1_Integrated Programme Schedule;OEM (Engineering & Deliverables);BOILER AREA;STRUCTURE FOR GAS TRANSFER, CONVERSION & STORAGE;Concrete / Formwork / Reinforcement 10UEN",2,1,0.0000002898,0.0002034588,0.0014242116,34,1.0,0.0001538896,0.0136986301,0.0030769231,0.0004375,0.0005221932,0.0045045045,0.0762331839,1.0,0.029768542
1.5.10,61464,"GAS AND STEAM TURBINE AREA",7112,"CCGTD1_IPS",WBS,"58234",,,,100,Complete,24/11/2016,10/11/2016,12/12/2021,02/01/2019,,,,,69,103,332,215,16,24,77,50,,,"CCGT D1_Integrated Programme Schedule;OEM (Engineering & Deliverables)"
1.5.10.1,61563,"STRUCTURE FOR STORAGE USX",7112,"CCGTD1_IPS",WBS,"61464",,,,100,Complete,26/11/2017,23/11/2017,26/11/2017,23/11/2017,,,,,121,157,121,157,28,36,28,36,,,"CCGT D1_Integrated Programme Schedule;OEM (Engineering & Deliverables);GAS AND STEAM TURBINE AREA"
1.5.10.1.1,61564,"Concrete / Formwork / Reinforcement USX",7112,"CCGTD1_IPS",WBS,"61563",,,,100,Complete,26/11/2017,23/11/2017,26/11/2017,23/11/2017,,,,,121,157,121,157,28,36,28,36,,,"CCGT D1_Integrated Programme Schedule;OEM (Engineering & Deliverables);GAS AND STEAM TURBINE AREA;STRUCTURE FOR STORAGE USX"
1.5.10.1.1-1,SI1USX2-60,"(MS3) CONCRETE STRUCTURE FINAL DIMENSIONS LOADS AVAILABLE USX",7112,"CCGTD1_IPS",TT_Mile,"61564",-,-,-,100,TK_Complete,26/11/2017,23/11/2017,26/11/2017,23/11/2017,"","","","",121,157,121,157,28,36,28,36,15,,"CCGT D1_Integrated Programme Schedule;OEM (Engineering & Deliverables);GAS AND STEAM TURBINE AREA;STRUCTURE FOR STORAGE USX;Concrete / Formwork / Reinforcement USX",0,0,0.0,0.0,0.0,0,1.0,0.0000812387,0.0,0.0,0.0,0.0,0.0,0.0,1.0,0.0
1.5.10.2,61560,"STRUCTURE FOR EXHAUST GAS DIFFUSER",7112,"CCGTD1_IPS",WBS,"61464",,,,100,Complete,16/03/2017,10/03/2017,01/04/2018,10/03/2018,,,,,85,121,139,173,19,28,32,40,,,"CCGT D1_Integrated Programme Schedule;OEM (Engineering & Deliverables);GAS AND STEAM TURBINE AREA"
1.5.10.2.1,61562,"Exhaust Diffuser MBR",7112,"CCGTD1_IPS",WBS,"61560",,,,100,Complete,16/03/2017,10/03/2017,01/04/2018,10/03/2018,,,,,85,121,139,173,19,28,32,40,,,"CCGT D1_Integrated Programme Schedule;OEM (Engineering & Deliverables);GAS AND STEAM TURBINE AREA;STRUCTURE FOR EXHAUST GAS DIFFUSER"
1.5.10.2.1-1,SP1MBR3A25,"DETAIL DESIGN / MANUFACTURING TURBINE EXHAUST MANIFOLD MBR",7112,"CCGTD1_IPS",TT_Task,"61562",-,-,-,100,TK_Complete,09/04/2017,24/03/2017,30/12/2017,14/12/2017,"","","SP1MBR3A80 FS","SP1MBR3A80",88,123,126,160,20,28,29,37,4,,"CCGT D1_Integrated Programme Schedule;OEM (Engineering & Deliverables);GAS AND STEAM TURBINE AREA;STRUCTURE FOR EXHAUST GAS DIFFUSER;Exhaust Diffuser MBR",0,1,0.0,0.0008138352,0.0,265,1.0,0.0000812387,0.0,0.0030769231,0.0,0.0020887728,0.0,0.5941704036,1.0,0.0
1.5.10.2.1-2,SP1MBR3A80,"DELIVERY TURBINE EXHAUST MANIFOLD MBR EX WORKS",7112,"CCGTD1_IPS",TT_Mile,"61562",-,-,-,100,TK_Complete,26/01/2018,15/12/2017,26/01/2018,15/12/2017,"SP1MBR3A25 FS","SP1MBR3A25","SP1MBR4A15 FS","SP1MBR4A15",130,161,130,161,30,37,30,37,17,,"CCGT D1_Integrated Programme Schedule;OEM (Engineering & Deliverables);GAS AND STEAM TURBINE AREA;STRUCTURE FOR EXHAUST GAS DIFFUSER;Exhaust Diffuser MBR",1,1,0.0000001242,0.0006103764,0.0002034588,0,1.0,0.0000812387,0.0068493151,0.0030769231,0.0001875,0.0015665796,0.0006435006,0.0,1.0,0.0
1.5.10.2.1-3,SP1MBR4A15,"TRANSPORT TURBINE EXHAUST MANIFOLD MBR TO PORT OF EXPORT",7112,"CCGTD1_IPS",TT_Task,"61562",-,-,-,100,TK_Complete,26/01/2018,15/12/2017,08/02/2018,28/12/2017,"SP1MBR3A80 FS","SP1MBR3A80","SI1MBR4A42 FS","SI1MBR4A42",130,161,132,162,30,37,30,38,17,,"CCGT D1_Integrated Programme Schedule;OEM (Engineering & Deliverables);GAS AND STEAM TURBINE AREA;STRUCTURE FOR EXHAUST GAS DIFFUSER;Exhaust Diffuser MBR",1,1,0.0000001656,0.0004069176,0.0004069176,13,1.0,0.0001503957,0.0068493151,0.0030769231,0.00025,0.0010443864,0.0012870013,0.0291479821,1.0,0.0283369572
1.5.10.2.1-4,SP1MBR3-25,"DETAIL DESIGN / MANUFACTURING DIFFUSER MBR",7112,"CCGTD1_IPS",TT_Task,"61562",-,-,-,100,TK_Complete,16/03/2017,10/03/2017,06/12/2017,30/11/2017,"","","SP1MBR3-80 FS","SP1MBR3-80",85,121,123,158,19,28,28,37,3,,"CCGT D1_Integrated Programme Schedule;OEM (Engineering & Deliverables);GAS AND STEAM TURBINE AREA;STRUCTURE FOR EXHAUST GAS DIFFUSER;Exhaust Diffuser MBR",0,1,0.0,0.0008138352,0.0,265,1.0,0.0000812387,0.0,0.0030769231,0.0,0.0020887728,0.0,0.5941704036,1.0,0.0
1.5.10.2.1-5,SP1MBR3-80,"DELIVERY DIFFUSER MBR EX WORKS",7112,"CCGTD1_IPS",TT_Mile,"61562",-,-,-,100,TK_Complete,26/01/2018,15/12/2017,26/01/2018,15/12/2017,"SP1MBR3-25 FS","SP1MBR3-25","SP1MBR4-15 FS","SP1MBR4-15",130,161,130,161,30,37,30,37,17,,"CCGT D1_Integrated Programme Schedule;OEM (Engineering & Deliverables);GAS AND STEAM TURBINE AREA;STRUCTURE FOR EXHAUST GAS DIFFUSER;Exhaust Diffuser MBR",1,1,0.0000001242,0.0006103764,0.0002034588,0,1.0,0.0000812387,0.0068493151,0.0030769231,0.0001875,0.0015665796,0.0006435006,0.0,1.0,0.0
1.5.10.2.1-6,SP1MBR4-15,"TRANSPORT DIFFUSER MBR TO PORT OF EXPORT",7112,"CCGTD1_IPS",TT_Task,"61562",-,-,-,100,TK_Complete,26/01/2018,15/12/2017,08/02/2018,28/12/2017,"SP1MBR3-80 FS","SP1MBR3-80","SI1MBR4-25 FS","SI1MBR4-25",130,161,132,162,30,37,30,38,17,,"CCGT D1_Integrated Programme Schedule;OEM (Engineering & Deliverables);GAS AND STEAM TURBINE AREA;STRUCTURE FOR EXHAUST GAS DIFFUSER;Exhaust Diffuser MBR",1,1,0.0000001656,0.0004069176,0.0004069176,13,1.0,0.0001503957,0.0068493151,0.0030769231,0.00025,0.0010443864,0.0012870013,0.0291479821,1.0,0.0283369572
1.5.10.2.1-7,SI1MBR4A42,"TRANSPORT TURBINE EXHAUST MANIFOLD MBR",7112,"CCGTD1_IPS",TT_Task,"61562",-,-,-,100,TK_Complete,26/03/2018,02/03/2018,01/04/2018,10/03/2018,"SP1MBR4A15 FS","SP1MBR4A15","SI1MBR4-44 FS","SI1MBR4-44",138,172,139,173,32,40,32,40,23,,"CCGT D1_Integrated Programme Schedule;OEM (Engineering & Deliverables);GAS AND STEAM TURBINE AREA;STRUCTURE FOR EXHAUST GAS DIFFUSER;Exhaust Diffuser MBR",1,1,0.0000001242,0.0002034588,0.0006103764,6,0.8,0.000209244,0.0068493151,0.0030769231,0.0001875,0.0005221932,0.0019305019,0.0134529148,0.8,0.0524499399
1.5.10.2.1-8,SI1MBR4-44,"(OTD-OS) ON SITE EXHAUST GAS SYSTEM TURBINE EXHAUST MANIFOLD MBR",7112,"CCGTD1_IPS",TT_FinMile,"61562",-,-,-,100,TK_Complete,26/03/2018,10/03/2018,26/03/2018,10/03/2018,"SI1MBR4A42 FS","SI1MBR4A42","","",138,173,138,173,32,40,32,40,23,,"CCGT D1_Integrated Programme Schedule;OEM (Engineering & Deliverables);GAS AND STEAM TURBINE AREA;STRUCTURE FOR EXHAUST GAS DIFFUSER;Exhaust Diffuser MBR",1,0,0.0,0.0,0.0008138352,0,1.0,0.0000812387,0.0068493151,0.0,0.0,0.0,0.0025740026,0.0,1.0,0.0
1.5.10.2.1-9,SI1MBR4-25,"TRANSPORT DIFFUSER MBR",7112,"CCGTD1_IPS",TT_Task,"61562",-,-,-,100,TK_Complete,26/03/2018,28/02/2018,27/03/2018,02/03/2018,"SP1MBR4-15 FS","SP1MBR4-15","SI1MBR4-46 FS","SI1MBR4-46",138,171,138,172,32,40,32,40,23,,"CCGT D1_Integrated Programme Schedule;OEM (Engineering & Deliverables);GAS AND STEAM TURBINE AREA;STRUCTURE FOR EXHAUST GAS DIFFUSER;Exhaust Diffuser MBR",1,1,0.0000001242,0.0002034588,0.0006103764,1,0.8,0.000209244,0.0068493151,0.0030769231,0.0001875,0.0005221932,0.0019305019,0.0022421525,0.8,0.0524499399
1.5.10.2.1-10,SI1MBR4-46,"(OTD-OS) ON SITE EXHAUST GAS SYSTEM DIFFUSER MBR",7112,"CCGTD1_IPS",TT_FinMile,"61562",-,-,-,100,TK_Complete,26/03/2018,02/03/2018,26/03/2018,02/03/2018,"SI1MBR4-25 FS","SI1MBR4-25","","",138,172,138,172,32,40,32,40,23,,"CCGT D1_Integrated Programme Schedule;OEM (Engineering & Deliverables);GAS AND STEAM TURBINE AREA;STRUCTURE FOR EXHAUST GAS DIFFUSER;Exhaust Diffuser MBR",1,0,0.0,0.0,0.0008138352,0,1.0,0.0000812387,0.0068493151,0.0,0.0,0.0,0.0025740026,0.0,1.0,0.0
1.5.10.2.2,61561,"Concrete / Formwork / Reinforcement UMX",7112,"CCGTD1_IPS",WBS,"61560",,,,100,Complete,30/04/2017,08/04/2017,04/06/2017,12/05/2017,,,,,91,125,96,130,21,29,22,30,,,"CCGT D1_Integrated Programme Schedule;OEM (Engineering & Deliverables);GAS AND STEAM TURBINE AREA;STRUCTURE FOR EXHAUST GAS DIFFUSER"
1.5.10.2.2-1,SI1UMX2-45,"PREPARATION BASIC BUILDING DWGS  UMX",7112,"CCGTD1_IPS",TT_Task,"61561",-,-,-,100,TK_Complete,01/05/2017,08/04/2017,04/06/2017,12/05/2017,"SI1UMX2-60 FF,SI-3412-20 FS","SI1UMX2-60,SI-3412-20","","",91,125,96,130,21,29,22,30,4,,"CCGT D1_Integrated Programme Schedule;OEM (Engineering & Deliverables);GAS AND STEAM TURBINE AREA;STRUCTURE FOR EXHAUST GAS DIFFUSER;Concrete / Formwork / Reinforcement UMX",2,0,0.0,0.0,0.0006103764,34,1.0,0.0001538896,0.0136986301,0.0,0.0,0.0,0.0019305019,0.0762331839,1.0,0.029768542
1.5.10.2.2-2,SI1UMX2-60,"(MS3) CONCRETE STRUCTURE FINAL DIMENSIONS LOADS AVAILABLE UMX",7112,"CCGTD1_IPS",TT_FinMile,"61561",-,-,-,100,TK_Complete,30/04/2017,21/04/2017,30/04/2017,21/04/2017,"","","SI1UMX2-45 FF","SI1UMX2-45",91,127,91,127,21,29,21,29,4,,"CCGT D1_Integrated Programme Schedule;OEM (Engineering & Deliverables);GAS AND STEAM TURBINE AREA;STRUCTURE FOR EXHAUST GAS DIFFUSER;Concrete / Formwork / Reinforcement UMX",0,1,0.0,0.0002034588,0.0,0,1.0,0.0000812387,0.0,0.0030769231,0.0,0.0005221932,0.0,0.0,1.0,0.0
1.5.10.3,61558,"STRUCTURE FOR OIL COLLECTING PIT/OIL SEPARATOR",7112,"CCGTD1_IPS",WBS,"61464",,,,100,Complete,31/05/2017,17/05/2017,31/05/2017,17/05/2017,,,,,96,130,96,130,22,30,22,30,,,"CCGT D1_Integrated Programme Schedule;OEM (Engineering & Deliverables);GAS AND STEAM TURBINE AREA"
1.5.10.3.1,61559,"Concrete / Formwork / Reinforcement inside Power Block UBH",7112,"CCGTD1_IPS",WBS,"61558",,,,100,Complete,31/05/2017,17/05/2017,31/05/2017,17/05/2017,,,,,96,130,96,130,22,30,22,30,,,"CCGT D1_Integrated Programme Schedule;OEM (Engineering & Deliverables);GAS AND STEAM TURBINE AREA;STRUCTURE FOR OIL COLLECTING PIT/OIL SEPARATOR"
1.5.10.3.1-1,SI0UBH2-60,"(MS3) CONCRETE STRUCTURE FINAL DIMENSIONS LOADS AVAILABLE UBH01",7112,"CCGTD1_IPS",TT_FinMile,"61559",-,-,-,100,TK_Complete,31/05/2017,17/05/2017,31/05/2017,17/05/2017,"SI----2C00 FS","SI----2C00","","",96,130,96,130,22,30,22,30,6,,"CCGT D1_Integrated Programme Schedule;OEM (Engineering & Deliverables);GAS AND STEAM TURBINE AREA;STRUCTURE FOR OIL COLLECTING PIT/OIL SEPARATOR;Concrete / Formwork / Reinforcement inside Power Block UBH",1,0,0.0,0.0,0.0002034588,0,1.0,0.0000812387,0.0068493151,0.0,0.0,0.0,0.0006435006,0.0,1.0,0.0
1.5.10.4,61556,"STRUCTURE  AUXILIARY  LV TRANSFORMER",7112,"CCGTD1_IPS",WBS,"61464",,,,100,Complete,25/07/2017,20/07/2017,23/05/2018,15/05/2018,,,,,103,139,147,182,24,32,34,42,,,"CCGT D1_Integrated Programme Schedule;OEM (Engineering & Deliverables);GAS AND STEAM TURBINE AREA"
1.5.10.4.1,61557,"LV Transformer for GT (BFT)",7112,"CCGTD1_IPS",WBS,"61556",,,,100,Complete,25/07/2017,20/07/2017,23/05/2018,15/05/2018,,,,,103,139,147,182,24,32,34,42,,,"CCGT D1_Integrated Programme Schedule;OEM (Engineering & Deliverables);GAS AND STEAM TURBINE AREA;STRUCTURE  AUXILIARY  LV TRANSFORMER"
1.5.10.4.1-1,SI1BFT3-25,"MANUFACTURING, SHOP TEST LV-TRANSFORMERS BFT",7112,"CCGTD1_IPS",TT_Task,"61557",-,-,-,100,TK_Complete,25/07/2017,20/07/2017,22/01/2018,21/02/2018,"","","SI1BFT3-80 FS","SI1BFT3-80",103,139,129,170,24,32,30,39,9,,"CCGT D1_Integrated Programme Schedule;OEM (Engineering & Deliverables);GAS AND STEAM TURBINE AREA;STRUCTURE  AUXILIARY  LV TRANSFORMER;LV Transformer for GT (BFT)",0,1,0.0,0.0004069176,0.0,181,0.0,0.0000812387,0.0,0.0030769231,0.0,0.0010443864,0.0,0.4058295964,0.0,0.0
1.5.10.4.1-2,SI1BFT4-27,"TRANSPORT LV-TRANSFORMERS BFT",7112,"CCGTD1_IPS",TT_Task,"61557",-,-,-,100,TK_Complete,25/03/2018,08/04/2018,23/05/2018,15/05/2018,"SI1BFT3-80 FS","SI1BFT3-80","","",138,177,147,182,32,41,34,42,23,,"CCGT D1_Integrated Programme Schedule;OEM (Engineering & Deliverables);GAS AND STEAM TURBINE AREA;STRUCTURE  AUXILIARY  LV TRANSFORMER;LV Transformer for GT (BFT)",1,0,0.0,0.0,0.0004069176,59,1.0,0.0001503957,0.0068493151,0.0,0.0,0.0,0.0012870013,0.1322869955,1.0,0.0283369572
1.5.10.4.1-3,SI1BFT3-80,"(RFS) READY FOR SHIPMENT LV-TRANSFORMERS BFT",7112,"CCGTD1_IPS",TT_FinMile,"61557",-,-,-,100,TK_Complete,24/03/2018,21/02/2018,24/03/2018,21/02/2018,"SI1BFT3-25 FS","SI1BFT3-25","SI1BFT4-27 FS","SI1BFT4-27",138,170,138,170,32,39,32,39,23,,"CCGT D1_Integrated Programme Schedule;OEM (Engineering & Deliverables);GAS AND STEAM TURBINE AREA;STRUCTURE  AUXILIARY  LV TRANSFORMER;LV Transformer for GT (BFT)",1,1,0.0000000414,0.0002034588,0.0002034588,0,1.0,0.0000812387,0.0068493151,0.0030769231,0.0000625,0.0005221932,0.0006435006,0.0,1.0,0.0
1.5.10.5,61552,"STRUCTURE FOR EMERGENCY POWER GENERATING SET",7112,"CCGTD1_IPS",WBS,"61464",,,,100,Complete,31/05/2017,10/05/2017,22/07/2018,17/11/2018,,,,,96,129,155,209,22,30,36,48,,,"CCGT D1_Integrated Programme Schedule;OEM (Engineering & Deliverables);GAS AND STEAM TURBINE AREA"
1.5.10.5.1,61555,"Cable Support System BZP",7112,"CCGTD1_IPS",WBS,"61552",,,,100,Complete,25/07/2017,01/07/2017,04/09/2017,24/08/2017,,,,,103,137,109,144,24,32,25,33,,,"CCGT D1_Integrated Programme Schedule;OEM (Engineering & Deliverables);GAS AND STEAM TURBINE AREA;STRUCTURE FOR EMERGENCY POWER GENERATING SET"
1.5.10.5.1-1,SI0BZP2H30,"DETAIL DESIGN CABLE SUPPORT SYSTEM UBN",7112,"CCGTD1_IPS",TT_Task,"61555",-,-,-,100,TK_Complete,25/07/2017,01/07/2017,04/09/2017,24/08/2017,"SI0UBN2-45 FS","SI0UBN2-45","","",103,137,109,144,24,32,25,33,9,,"CCGT D1_Integrated Programme Schedule;OEM (Engineering & Deliverables);GAS AND STEAM TURBINE AREA;STRUCTURE FOR EMERGENCY POWER GENERATING SET;Cable Support System BZP",1,0,0.0,0.0,0.0008138352,41,0.0,0.0002122171,0.0068493151,0.0,0.0,0.0,0.0025740026,0.0919282511,0.0,0.0536681293
1.5.10.5.2,61554,"Emergency Diesel Generator Set for Power Block XKA",7112,"CCGTD1_IPS",WBS,"61552",,,,100,Complete,01/06/2017,16/05/2017,22/07/2018,17/11/2018,,,,,96,130,155,209,22,30,36,48,,,"CCGT D1_Integrated Programme Schedule;OEM (Engineering & Deliverables);GAS AND STEAM TURBINE AREA;STRUCTURE FOR EMERGENCY POWER GENERATING SET"
1.5.10.5.2-1,SI0XKA3-25,"MANUFACTURING, SHOP TEST EMERGENCY DIESEL GENERATOR SET XKA",7112,"CCGTD1_IPS",TT_Task,"61554",-,-,-,100,TK_Complete,02/09/2017,01/08/2017,18/05/2018,31/05/2018,"SI0XKA2-85 FS","SI0XKA2-85","SI0XKA3-80 FS","SI0XKA3-80",109,141,146,184,25,33,34,43,11,,"CCGT D1_Integrated Programme Schedule;OEM (Engineering & Deliverables);GAS AND STEAM TURBINE AREA;STRUCTURE FOR EMERGENCY POWER GENERATING SET;Emergency Diesel Generator Set for Power Block XKA",1,1,0.000000414,0.0004069176,0.001017294,258,0.0,0.0001503957,0.0068493151,0.0030769231,0.000625,0.0010443864,0.0032175032,0.5784753363,0.0,0.0283369572
1.5.10.5.2-2,SI0XKA4-27,"TRANSPORT EMERGENCY DIESEL GENERATOR .SET XKA",7112,"CCGTD1_IPS",TT_Task,"61554",-,-,-,100,TK_Complete,24/05/2018,15/10/2018,22/07/2018,17/11/2018,"SI0XKA3-80 FS","SI0XKA3-80","","",147,204,155,209,34,47,36,48,28,,"CCGT D1_Integrated Programme Schedule;OEM (Engineering & Deliverables);GAS AND STEAM TURBINE AREA;STRUCTURE FOR EMERGENCY POWER GENERATING SET;Emergency Diesel Generator Set for Power Block XKA",1,0,0.0,0.0,0.0014242116,59,1.0,0.0001503957,0.0068493151,0.0,0.0,0.0,0.0045045045,0.1322869955,1.0,0.0283369572
1.5.10.5.2-3,SI0XKA2-15,"BASIC DESIGN, SPECIFICATION EMERGENCY DIESEL GENERATOR SET XKA",7112,"CCGTD1_IPS",TT_Task,"61554",-,-,-,100,TK_Complete,01/06/2017,16/05/2017,28/06/2017,12/06/2017,"SI----2C00 FS","SI----2C00","SI0XKA2-75 FS","SI0XKA2-75",96,130,100,134,22,30,23,31,6,,"CCGT D1_Integrated Programme Schedule;OEM (Engineering & Deliverables);GAS AND STEAM TURBINE AREA;STRUCTURE FOR EMERGENCY POWER GENERATING SET;Emergency Diesel Generator Set for Power Block XKA",1,1,0.0000002484,0.0012207528,0.0002034588,27,1.0,0.0000837826,0.0068493151,0.0030769231,0.000375,0.0031331593,0.0006435006,0.0605381166,1.0,0.0010423676
1.5.10.5.2-4,SI0XKA3-80,"(RFS) READY FOR SHIPMENT EMERGENCY DIESEL GENERATOR  SET XKA",7112,"CCGTD1_IPS",TT_FinMile,"61554",-,-,-,100,TK_Complete,23/05/2018,25/09/2018,23/05/2018,25/09/2018,"SI0XKA3-25 FS","SI0XKA3-25","SI0XKA4-27 FS","SI0XKA4-27",147,201,147,201,34,47,34,47,28,,"CCGT D1_Integrated Programme Schedule;OEM (Engineering & Deliverables);GAS AND STEAM TURBINE AREA;STRUCTURE FOR EMERGENCY POWER GENERATING SET;Emergency Diesel Generator Set for Power Block XKA",1,1,0.0000002484,0.0002034588,0.0012207528,0,1.0,0.0000812387,0.0068493151,0.0030769231,0.000375,0.0005221932,0.0038610039,0.0,1.0,0.0
1.5.10.5.2-5,SI0XKA2-80,"QUOTATION STAGE EMERGENCY DIESEL GENERATOR SET XKA",7112,"CCGTD1_IPS",TT_Task,"61554",-,-,-,100,TK_Complete,08/07/2017,13/06/2017,04/08/2017,31/07/2017,"SI0XKA2-75 FS","SI0XKA2-75","SI0XKA2-85 FS","SI0XKA2-85",101,134,105,141,23,31,24,33,9,,"CCGT D1_Integrated Programme Schedule;OEM (Engineering & Deliverables);GAS AND STEAM TURBINE AREA;STRUCTURE FOR EMERGENCY POWER GENERATING SET;Emergency Diesel Generator Set for Power Block XKA",1,1,0.0000004968,0.0008138352,0.0006103764,27,0.0,0.0001503957,0.0068493151,0.0030769231,0.00075,0.0020887728,0.0019305019,0.0605381166,0.0,0.0283369572
1.5.10.5.2-6,SI0XKA2-75,"RFQ EMERGENCY DIESEL GENERATOR SET XKA",7112,"CCGTD1_IPS",TT_Mile,"61554",-,-,-,100,TK_Complete,26/06/2017,13/06/2017,26/06/2017,13/06/2017,"SI0XKA2-15 FS","SI0XKA2-15","SI0XKA2-80 FS","SI0XKA2-80",99,134,99,134,23,31,23,31,8,,"CCGT D1_Integrated Programme Schedule;OEM (Engineering & Deliverables);GAS AND STEAM TURBINE AREA;STRUCTURE FOR EMERGENCY POWER GENERATING SET;Emergency Diesel Generator Set for Power Block XKA",1,1,0.000000414,0.001017294,0.0004069176,0,1.0,0.0000812387,0.0068493151,0.0030769231,0.000625,0.0026109661,0.0012870013,0.0,1.0,0.0
1.5.10.5.2-7,SI0XKA2-85,"ORDER PLACED EMERGENCY DIESEL GENERATOR SET XKA",7112,"CCGTD1_IPS",TT_Mile,"61554",-,-,-,100,TK_Complete,02/09/2017,01/08/2017,02/09/2017,01/08/2017,"SI0XKA2-80 FS","SI0XKA2-80","SI0XKA3-25 FS","SI0XKA3-25",109,141,109,141,25,33,25,33,11,,"CCGT D1_Integrated Programme Schedule;OEM (Engineering & Deliverables);GAS AND STEAM TURBINE AREA;STRUCTURE FOR EMERGENCY POWER GENERATING SET;Emergency Diesel Generator Set for Power Block XKA",1,1,0.0000004968,0.0006103764,0.0008138352,0,1.0,0.0000812387,0.0068493151,0.0030769231,0.00075,0.0015665796,0.0025740026,0.0,1.0,0.0
1.5.10.5.3,61553,"Concrete / Formwork / Reinforcement UBN",7112,"CCGTD1_IPS",WBS,"61552",,,,100,Complete,31/05/2017,10/05/2017,05/07/2017,25/07/2017,,,,,96,129,101,140,22,30,23,32,,,"CCGT D1_Integrated Programme Schedule;OEM (Engineering & Deliverables);GAS AND STEAM TURBINE AREA;STRUCTURE FOR EMERGENCY POWER GENERATING SET"
1.5.10.5.3-1,SI0UBN2-60,"(MS3) CONCRETE STRUCTURE FINAL DIMENSIONS LOADS AVAILABLE UBN",7112,"CCGTD1_IPS",TT_FinMile,"61553",-,-,-,100,TK_Complete,31/05/2017,23/05/2017,31/05/2017,23/05/2017,"","","SI0UBN2-45 FF","SI0UBN2-45",96,131,96,131,22,30,22,30,6,,"CCGT D1_Integrated Programme Schedule;OEM (Engineering & Deliverables);GAS AND STEAM TURBINE AREA;STRUCTURE FOR EMERGENCY POWER GENERATING SET;Concrete / Formwork / Reinforcement UBN",0,1,0.0,0.0004069176,0.0,0,1.0,0.0000812387,0.0,0.0030769231,0.0,0.0010443864,0.0,0.0,1.0,0.0
1.5.10.5.3-2,SI0UBN2-45,"PREPARATION BASIC BUILDING DWGS  UBN",7112,"CCGTD1_IPS",TT_Task,"61553",-,-,-,100,TK_Complete,01/06/2017,10/05/2017,05/07/2017,25/07/2017,"SI-3412-20 FS,SI0UBN2-60 FF","SI-3412-20,SI0UBN2-60","SI0BZP2H30 FS","SI0BZP2H30",96,129,101,140,22,30,23,32,6,,"CCGT D1_Integrated Programme Schedule;OEM (Engineering & Deliverables);GAS AND STEAM TURBINE AREA;STRUCTURE FOR EMERGENCY POWER GENERATING SET;Concrete / Formwork / Reinforcement UBN",2,1,0.0000001242,0.0002034588,0.0006103764,34,0.0,0.0001538896,0.0136986301,0.0030769231,0.0001875,0.0005221932,0.0019305019,0.0762331839,0.0,0.029768542
1.5.10.6,61550,"STRUCTURE FOR GENERATOR CIRCUIT BREAKER",7112,"CCGTD1_IPS",WBS,"61464",,,,100,Complete,08/05/2017,08/04/2017,28/03/2018,16/03/2018,,,,,92,125,139,174,21,29,32,40,,,"CCGT D1_Integrated Programme Schedule;OEM (Engineering & Deliverables);GAS AND STEAM TURBINE AREA"
1.5.10.6.1,61551,"Generator Circuit Breaker for GT BAC",7112,"CCGTD1_IPS",WBS,"61550",,,,100,Complete,08/05/2017,08/04/2017,28/03/2018,16/03/2018,,,,,92,125,139,174,21,29,32,40,,,"CCGT D1_Integrated Programme Schedule;OEM (Engineering & Deliverables);GAS AND STEAM TURBINE AREA;STRUCTURE FOR GENERATOR CIRCUIT BREAKER"
1.5.10.6.1-1,SI1BAC3-80,"(RFS) READY FOR SHIPMENT GENERATOR .CIRCUIT BREAKER BAC",7112,"CCGTD1_IPS",TT_FinMile,"61551",-,-,-,100,TK_Complete,28/03/2018,20/12/2017,28/03/2018,20/12/2017,"SI1BAC3-25 FS","SI1BAC3-25","SI1BAC4-27 FS","SI1BAC4-27",139,161,139,161,32,37,32,37,23,,"CCGT D1_Integrated Programme Schedule;OEM (Engineering & Deliverables);GAS AND STEAM TURBINE AREA;STRUCTURE FOR GENERATOR CIRCUIT BREAKER;Generator Circuit Breaker for GT BAC",1,1,0.0000001656,0.0002034588,0.0008138352,0,1.0,0.0000812387,0.0068493151,0.0030769231,0.00025,0.0005221932,0.0025740026,0.0,1.0,0.0
1.5.10.6.1-2,SI1BAC2-80,"QUOTATION STAGE GENERATOR CIRCUIT BREAKER BAC",7112,"CCGTD1_IPS",TT_Task,"61551",-,-,-,100,TK_Complete,08/05/2017,08/04/2017,04/06/2017,05/05/2017,"SI1BAC2-75 FS","SI1BAC2-75","SI1BAC2-85 FS","SI1BAC2-85",92,125,96,129,21,29,22,30,5,,"CCGT D1_Integrated Programme Schedule;OEM (Engineering & Deliverables);GAS AND STEAM TURBINE AREA;STRUCTURE FOR GENERATOR CIRCUIT BREAKER;Generator Circuit Breaker for GT BAC",1,1,0.0000001656,0.0008138352,0.0002034588,27,1.0,0.0001503957,0.0068493151,0.0030769231,0.00025,0.0020887728,0.0006435006,0.0605381166,1.0,0.0283369572
1.5.10.6.1-3,SI1BAC2-75,"RFQ GENERATOR CIRCUIT BREAKER BAC",7112,"CCGTD1_IPS",TT_Mile,"61551",-,-,-,100,TK_Complete,08/05/2017,08/04/2017,08/05/2017,08/04/2017,"","","SI1BAC2-80 FS","SI1BAC2-80",92,125,92,125,21,29,21,29,5,,"CCGT D1_Integrated Programme Schedule;OEM (Engineering & Deliverables);GAS AND STEAM TURBINE AREA;STRUCTURE FOR GENERATOR CIRCUIT BREAKER;Generator Circuit Breaker for GT BAC",0,1,0.0,0.001017294,0.0,0,1.0,0.0000812387,0.0,0.0030769231,0.0,0.0026109661,0.0,0.0,1.0,0.0
1.5.10.6.1-4,SI1BAC3-25,"MANUFACTURING, SHOP TEST GENERATOR CIRCUIT BREAKER BAC",7112,"CCGTD1_IPS",TT_Task,"61551",-,-,-,100,TK_Complete,01/06/2017,06/05/2017,13/03/2018,20/12/2017,"SI1BAC2-85 FS","SI1BAC2-85","SI1BAC3-80 FS","SI1BAC3-80",96,129,136,161,22,30,31,37,6,,"CCGT D1_Integrated Programme Schedule;OEM (Engineering & Deliverables);GAS AND STEAM TURBINE AREA;STRUCTURE FOR GENERATOR CIRCUIT BREAKER;Generator Circuit Breaker for GT BAC",1,1,0.0000002484,0.0004069176,0.0006103764,285,1.0,0.0001503957,0.0068493151,0.0030769231,0.000375,0.0010443864,0.0019305019,0.6390134529,1.0,0.0283369572
1.5.10.6.1-5,SI1BAC4-27,"TRANSPORT GENERATOR CIRCUIT BREAKER BAC",7112,"CCGTD1_IPS",TT_Task,"61551",-,-,-,100,TK_Complete,05/02/2018,05/02/2018,06/03/2018,16/03/2018,"SI1BAC3-80 FS","SI1BAC3-80","","",131,168,135,174,30,39,31,40,18,,"CCGT D1_Integrated Programme Schedule;OEM (Engineering & Deliverables);GAS AND STEAM TURBINE AREA;STRUCTURE FOR GENERATOR CIRCUIT BREAKER;Generator Circuit Breaker for GT BAC",1,0,0.0,0.0,0.001017294,29,0.0,0.0001503957,0.0068493151,0.0,0.0,0.0,0.0032175032,0.0650224215,0.0,0.0283369572
1.5.10.6.1-6,SI1BAC2-85,"ORDER PLACED GENERATOR CIRCUIT BREAKER BAC",7112,"CCGTD1_IPS",TT_Mile,"61551",-,-,-,100,TK_Complete,01/06/2017,06/05/2017,01/06/2017,06/05/2017,"SI1BAC2-80 FS","SI1BAC2-80","SI1BAC3-25 FS","SI1BAC3-25",96,129,96,129,22,30,22,30,6,,"CCGT D1_Integrated Programme Schedule;OEM (Engineering & Deliverables);GAS AND STEAM TURBINE AREA;STRUCTURE FOR GENERATOR CIRCUIT BREAKER;Generator Circuit Breaker for GT BAC",1,1,0.0000002484,0.0006103764,0.0004069176,0,1.0,0.0000812387,0.0068493151,0.0030769231,0.000375,0.0015665796,0.0012870013,0.0,1.0,0.0
1.5.10.7,61548,"FOUNDATION FOR FUEL TRANSFER",7112,"CCGTD1_IPS",WBS,"61464",,,,100,Complete,26/06/2017,17/06/2017,06/11/2017,04/11/2017,,,,,99,135,118,155,23,31,27,36,,,"CCGT D1_Integrated Programme Schedule;OEM (Engineering & Deliverables);GAS AND STEAM TURBINE AREA"
1.5.10.7.1,61549,"Concrete / Formwork / Reinforcement UEZ01/02",7112,"CCGTD1_IPS",WBS,"61548",,,,100,Complete,26/06/2017,17/06/2017,06/11/2017,04/11/2017,,,,,99,135,118,155,23,31,27,36,,,"CCGT D1_Integrated Programme Schedule;OEM (Engineering & Deliverables);GAS AND STEAM TURBINE AREA;FOUNDATION FOR FUEL TRANSFER"
1.5.10.7.1-1,SI1UEZ2-70,"DETAIL DESIGN / CHECKER CONCRETE STRUCTURE UEZ01/02",7112,"CCGTD1_IPS",TT_Task,"61549",-,-,-,100,TK_Complete,05/09/2017,08/08/2017,06/11/2017,04/11/2017,"SI1UEZ2-45 FS","SI1UEZ2-45","","",109,142,118,155,25,33,27,36,11,,"CCGT D1_Integrated Programme Schedule;OEM (Engineering & Deliverables);GAS AND STEAM TURBINE AREA;FOUNDATION FOR FUEL TRANSFER;Concrete / Formwork / Reinforcement UEZ01/02",1,0,0.0,0.0,0.0008138352,62,0.0,0.0002122171,0.0068493151,0.0,0.0,0.0,0.0025740026,0.1390134529,0.0,0.0536681293
1.5.10.7.1-2,SI1UEZ2-60,"(MS3) CONCRETE STRUCTURE FINAL DIMENSIONS LOADS AVAILABLE UEZ01/02",7112,"CCGTD1_IPS",TT_FinMile,"61549",-,-,-,100,TK_Complete,25/07/2017,10/07/2017,25/07/2017,10/07/2017,"","","SI1UEZ2-45 FF","SI1UEZ2-45",103,138,103,138,24,32,24,32,9,,"CCGT D1_Integrated Programme Schedule;OEM (Engineering & Deliverables);GAS AND STEAM TURBINE AREA;FOUNDATION FOR FUEL TRANSFER;Concrete / Formwork / Reinforcement UEZ01/02",0,1,0.0,0.0004069176,0.0,0,1.0,0.0000812387,0.0,0.0030769231,0.0,0.0010443864,0.0,0.0,1.0,0.0
1.5.10.7.1-3,SI1UEZ2-45,"PREPARATION BASIC BUILDING DWGS  UEZ01/02",7112,"CCGTD1_IPS",TT_Task,"61549",-,-,-,100,TK_Complete,26/06/2017,17/06/2017,30/07/2017,07/08/2017,"SI1UEZ2-60 FF,SI-3412-20 FS","SI1UEZ2-60,SI-3412-20","SI1UEZ2-70 FS","SI1UEZ2-70",99,135,104,142,23,31,24,33,8,,"CCGT D1_Integrated Programme Schedule;OEM (Engineering & Deliverables);GAS AND STEAM TURBINE AREA;FOUNDATION FOR FUEL TRANSFER;Concrete / Formwork / Reinforcement UEZ01/02",2,1,0.0000001242,0.0002034588,0.0006103764,34,0.0,0.0001538896,0.0136986301,0.0030769231,0.0001875,0.0005221932,0.0019305019,0.0762331839,0.0,0.029768542
1.5.10.8,61543,"STRUCTURE FOR CONDENSATE POLISHING PLANT",7112,"CCGTD1_IPS",WBS,"61464",,,,100,Complete,16/03/2017,01/03/2017,25/07/2018,06/11/2018,,,,,85,119,156,207,19,27,36,48,,,"CCGT D1_Integrated Programme Schedule;OEM (Engineering & Deliverables);GAS AND STEAM TURBINE AREA"
1.5.10.8.1,61547,"Condensate Polishing Pump LDK",7112,"CCGTD1_IPS",WBS,"61543",,,,100,Complete,15/06/2017,20/05/2017,31/05/2018,06/04/2018,,,,,98,131,148,177,22,30,34,41,,,"CCGT D1_Integrated Programme Schedule;OEM (Engineering & Deliverables);GAS AND STEAM TURBINE AREA;STRUCTURE FOR CONDENSATE POLISHING PLANT"
1.5.10.8.1-1,SI1LDK3B25,"DETAIL DESIGN, MANUFACTURING, SHOP TEST CONDENSATE POLISHING PUMP LDK",7112,"CCGTD1_IPS",TT_Task,"61547",-,-,-,100,TK_Complete,15/06/2017,20/05/2017,10/04/2018,15/12/2017,"","","SI1LDK3B80 FS","SI1LDK3B80",98,131,140,161,22,30,32,37,7,,"CCGT D1_Integrated Programme Schedule;OEM (Engineering & Deliverables);GAS AND STEAM TURBINE AREA;STRUCTURE FOR CONDENSATE POLISHING PLANT;Condensate Polishing Pump LDK",0,1,0.0,0.0006103764,0.0,299,1.0,0.0000812387,0.0,0.0030769231,0.0,0.0015665796,0.0,0.6704035874,1.0,0.0
1.5.10.8.1-2,SI1LDK4B25,"TRANSPORT CONDENSATE POLISHING PUMP LDK",7112,"CCGTD1_IPS",TT_Task,"61547",-,-,-,100,TK_Complete,26/02/2018,25/02/2018,17/04/2018,06/04/2018,"SI1LDK3B80 SS","SI1LDK3B80","SI1LDK4B42 FS","SI1LDK4B42",134,171,141,177,31,39,33,41,19,,"CCGT D1_Integrated Programme Schedule;OEM (Engineering & Deliverables);GAS AND STEAM TURBINE AREA;STRUCTURE FOR CONDENSATE POLISHING PLANT;Condensate Polishing Pump LDK",1,1,0.0000000828,0.0002034588,0.0004069176,50,1.0,0.0001503957,0.0068493151,0.0030769231,0.000125,0.0005221932,0.0012870013,0.1121076233,1.0,0.0283369572
1.5.10.8.1-3,SI1LDK4B42,"(OTD-OS) ON SITE CONDENSATE POLISHING PUMP LDK",7112,"CCGTD1_IPS",TT_FinMile,"61547",-,-,-,100,TK_Complete,31/05/2018,06/04/2018,31/05/2018,06/04/2018,"SI1LDK4B25 FS","SI1LDK4B25","","",148,177,148,177,34,41,34,41,29,,"CCGT D1_Integrated Programme Schedule;OEM (Engineering & Deliverables);GAS AND STEAM TURBINE AREA;STRUCTURE FOR CONDENSATE POLISHING PLANT;Condensate Polishing Pump LDK",1,0,0.0,0.0,0.0006103764,0,1.0,0.0000812387,0.0068493151,0.0,0.0,0.0,0.0019305019,0.0,1.0,0.0
1.5.10.8.1-4,SI1LDK3B80,"(RFS) READY FOR SHIPMENT CONDENSATE POLISHING PUMP LDK",7112,"CCGTD1_IPS",TT_FinMile,"61547",-,-,-,100,TK_Complete,26/01/2018,02/01/2018,26/01/2018,02/01/2018,"SI1LDK3B25 FS","SI1LDK3B25","SI1LDK4B25 SS","SI1LDK4B25",130,163,130,163,30,38,30,38,17,,"CCGT D1_Integrated Programme Schedule;OEM (Engineering & Deliverables);GAS AND STEAM TURBINE AREA;STRUCTURE FOR CONDENSATE POLISHING PLANT;Condensate Polishing Pump LDK",1,1,0.0000000828,0.0004069176,0.0002034588,0,1.0,0.0000812387,0.0068493151,0.0030769231,0.000125,0.0010443864,0.0006435006,0.0,1.0,0.0
1.5.10.8.2,61546,"Condensate Polishing Plant LD-",7112,"CCGTD1_IPS",WBS,"61543",,,,100,Complete,16/03/2017,01/03/2017,25/07/2018,06/11/2018,,,,,85,119,156,207,19,27,36,48,,,"CCGT D1_Integrated Programme Schedule;OEM (Engineering & Deliverables);GAS AND STEAM TURBINE AREA;STRUCTURE FOR CONDENSATE POLISHING PLANT"
1.5.10.8.2-1,SI1LD-3-80,"(RFS) READY FOR SHIPMENT CONDENSATE POLISHING PLANT LD",7112,"CCGTD1_IPS",TT_FinMile,"61546",-,-,-,100,TK_Complete,06/06/2018,21/09/2018,06/06/2018,21/09/2018,"SI1LD-3-25 FS","SI1LD-3-25","SI1LD-4-25 FS","SI1LD-4-25",149,201,149,201,34,46,34,46,30,,"CCGT D1_Integrated Programme Schedule;OEM (Engineering & Deliverables);GAS AND STEAM TURBINE AREA;STRUCTURE FOR CONDENSATE POLISHING PLANT;Condensate Polishing Plant LD-",1,1,0.0000000828,0.0004069176,0.0002034588,0,1.0,0.0000812387,0.0068493151,0.0030769231,0.000125,0.0010443864,0.0006435006,0.0,1.0,0.0
1.5.10.8.2-2,SI1LD-3-25,"DESIGN, MANUFACTURING, SHOP TEST CONDENSATE POLISHING PLANT LD",7112,"CCGTD1_IPS",TT_Task,"61546",-,-,-,100,TK_Complete,16/03/2017,01/03/2017,12/01/2018,20/07/2018,"","","SI1LD-3-80 FS","SI1LD-3-80",85,119,128,192,19,27,29,44,3,,"CCGT D1_Integrated Programme Schedule;OEM (Engineering & Deliverables);GAS AND STEAM TURBINE AREA;STRUCTURE FOR CONDENSATE POLISHING PLANT;Condensate Polishing Plant LD-",0,1,0.0,0.0006103764,0.0,302,0.0,0.0000812387,0.0,0.0030769231,0.0,0.0015665796,0.0,0.6771300448,0.0,0.0
1.5.10.8.2-3,SI1LD-4-25,"TRANSPORT CONDENSATE POLISHING PLANT LD",7112,"CCGTD1_IPS",TT_Task,"61546",-,-,-,100,TK_Complete,07/06/2018,02/10/2018,25/07/2018,06/11/2018,"SI1LD-3-80 FS","SI1LD-3-80","SI1LD-4-42 FS","SI1LD-4-42",149,202,156,207,34,47,36,48,30,,"CCGT D1_Integrated Programme Schedule;OEM (Engineering & Deliverables);GAS AND STEAM TURBINE AREA;STRUCTURE FOR CONDENSATE POLISHING PLANT;Condensate Polishing Plant LD-",1,1,0.0000000828,0.0002034588,0.0004069176,48,1.0,0.0001503957,0.0068493151,0.0030769231,0.000125,0.0005221932,0.0012870013,0.1076233184,1.0,0.0283369572
1.5.10.8.2-4,SI1LD-4-42,"(OTD-OS) ON SITE CONDENSATE POLISHING PLANT LD",7112,"CCGTD1_IPS",TT_FinMile,"61546",-,-,-,100,TK_Complete,25/07/2018,06/11/2018,25/07/2018,06/11/2018,"SI1LD-4-25 FS","SI1LD-4-25","","",156,207,156,207,36,48,36,48,33,,"CCGT D1_Integrated Programme Schedule;OEM (Engineering & Deliverables);GAS AND STEAM TURBINE AREA;STRUCTURE FOR CONDENSATE POLISHING PLANT;Condensate Polishing Plant LD-",1,0,0.0,0.0,0.0006103764,0,1.0,0.0000812387,0.0068493151,0.0,0.0,0.0,0.0019305019,0.0,1.0,0.0
1.5.10.8.3,61545,"Steel Platforms ULD",7112,"CCGTD1_IPS",WBS,"61543",,,,100,Complete,26/11/2017,31/10/2017,26/11/2017,31/10/2017,,,,,121,154,121,154,28,36,28,36,,,"CCGT D1_Integrated Programme Schedule;OEM (Engineering & Deliverables);GAS AND STEAM TURBINE AREA;STRUCTURE FOR CONDENSATE POLISHING PLANT"
1.5.10.8.3-1,SI1ULD2E75,"(F) DETAIL DESIGN STEEL PLATFORM ULD DWGS WITH CONTRACTOR",7112,"CCGTD1_IPS",TT_Mile,"61545",-,-,-,100,TK_Complete,26/11/2017,31/10/2017,26/11/2017,31/10/2017,"","","","",121,154,121,154,28,36,28,36,14,,"CCGT D1_Integrated Programme Schedule;OEM (Engineering & Deliverables);GAS AND STEAM TURBINE AREA;STRUCTURE FOR CONDENSATE POLISHING PLANT;Steel Platforms ULD",0,0,0.0,0.0,0.0,0,1.0,0.0000812387,0.0,0.0,0.0,0.0,0.0,0.0,1.0,0.0
1.5.10.8.4,61544,"Concrete / Formwork / Reinforcement ULD",7112,"CCGTD1_IPS",WBS,"61543",,,,100,Complete,12/04/2017,27/03/2017,16/05/2017,25/04/2017,,,,,89,123,93,127,20,28,21,29,,,"CCGT D1_Integrated Programme Schedule;OEM (Engineering & Deliverables);GAS AND STEAM TURBINE AREA;STRUCTURE FOR CONDENSATE POLISHING PLANT"
1.5.10.8.4-1,SI1ULD2-60,"(MS3) CONCRETE STRUCTURE FINAL DIMENSIONS LOADS AVAILABLE ULD",7112,"CCGTD1_IPS",TT_FinMile,"61544",-,-,-,100,TK_Complete,15/05/2017,18/04/2017,15/05/2017,18/04/2017,"SI-M--2C20 FS","SI-M--2C20","SI1ULD2-45 FF","SI1ULD2-45",93,126,93,126,21,29,21,29,5,,"CCGT D1_Integrated Programme Schedule;OEM (Engineering & Deliverables);GAS AND STEAM TURBINE AREA;STRUCTURE FOR CONDENSATE POLISHING PLANT;Concrete / Formwork / Reinforcement ULD",1,1,0.0000000828,0.0002034588,0.0004069176,0,1.0,0.0000812387,0.0068493151,0.0030769231,0.000125,0.0005221932,0.0012870013,0.0,1.0,0.0
1.5.10.8.4-2,SI1ULD2-45,"PREPARATION BASIC BUILDING DWGS  ULD",7112,"CCGTD1_IPS",TT_Task,"61544",-,-,-,100,TK_Complete,12/04/2017,27/03/2017,16/05/2017,25/04/2017,"SI-3412-20 FS,SI1ULD2-60 FF","SI-3412-20,SI1ULD2-60","","",89,123,93,127,20,28,21,29,4,,"CCGT D1_Integrated Programme Schedule;OEM (Engineering & Deliverables);GAS AND STEAM TURBINE AREA;STRUCTURE FOR CONDENSATE POLISHING PLANT;Concrete / Formwork / Reinforcement ULD",2,0,0.0,0.0,0.001017294,34,1.0,0.0001538896,0.0136986301,0.0,0.0,0.0,0.0032175032,0.0762331839,1.0,0.029768542
1.5.10.9,61534,"STRUCTURE FOR  GENERATOR AND AUX. TRANSFORMERS   UBF/UBE/UBL",7112,"CCGTD1_IPS",WBS,"61464",,,,100,Complete,26/11/2016,14/11/2016,05/10/2020,27/06/2018,,,,,69,104,270,188,16,24,63,44,,,"CCGT D1_Integrated Programme Schedule;OEM (Engineering & Deliverables);GAS AND STEAM TURBINE AREA"
1.5.10.9.1,61542,"Cable Support System BZP",7112,"CCGTD1_IPS",WBS,"61534",,,,100,Complete,01/07/2017,08/06/2017,11/08/2017,28/08/2017,,,,,100,133,106,145,23,31,24,33,,,"CCGT D1_Integrated Programme Schedule;OEM (Engineering & Deliverables);GAS AND STEAM TURBINE AREA;STRUCTURE FOR  GENERATOR AND AUX. TRANSFORMERS   UBF/UBE/UBL"
1.5.10.9.1-1,SI1BZP2I30,"DETAIL DESIGN CABLE SUPPORT SYSTEM UBE/UBF",7112,"CCGTD1_IPS",TT_Task,"61542",-,-,-,100,TK_Complete,01/07/2017,08/06/2017,11/08/2017,28/08/2017,"SI1UBF2-45 FS","SI1UBF2-45","","",100,133,106,145,23,31,24,33,8,,"CCGT D1_Integrated Programme Schedule;OEM (Engineering & Deliverables);GAS AND STEAM TURBINE AREA;STRUCTURE FOR  GENERATOR AND AUX. TRANSFORMERS   UBF/UBE/UBL;Cable Support System BZP",1,0,0.0,0.0,0.0008138352,41,0.0,0.0002122171,0.0068493151,0.0,0.0,0.0,0.0025740026,0.0919282511,0.0,0.0536681293
1.5.10.9.2,61541,"Unit Auxiliary Transformer BBT",7112,"CCGTD1_IPS",WBS,"61534",,,,100,Complete,01/02/2017,24/01/2017,28/02/2018,03/02/2018,,,,,79,114,135,168,18,26,31,39,,,"CCGT D1_Integrated Programme Schedule;OEM (Engineering & Deliverables);GAS AND STEAM TURBINE AREA;STRUCTURE FOR  GENERATOR AND AUX. TRANSFORMERS   UBF/UBE/UBL"
1.5.10.9.2-1,SI1BBT3-80,"(RFS) READY FOR SHIPMENT AUXILIARY TRANSFORMER BBT",7112,"CCGTD1_IPS",TT_FinMile,"61541",-,-,-,100,TK_Complete,13/02/2018,03/01/2018,13/02/2018,03/01/2018,"SI1BBT3-25 FS","SI1BBT3-25","SI1BBT4-27 FS","SI1BBT4-27",132,163,132,163,31,38,31,38,18,,"CCGT D1_Integrated Programme Schedule;OEM (Engineering & Deliverables);GAS AND STEAM TURBINE AREA;STRUCTURE FOR  GENERATOR AND AUX. TRANSFORMERS   UBF/UBE/UBL;Unit Auxiliary Transformer BBT",1,1,0.0000000414,0.0002034588,0.0002034588,0,1.0,0.0000812387,0.0068493151,0.0030769231,0.0000625,0.0005221932,0.0006435006,0.0,1.0,0.0
1.5.10.9.2-2,SI1BBT3-25,"MANUFACTURING, SHOP TEST AUXILIARY TRANSFORMER BBT",7112,"CCGTD1_IPS",TT_Task,"61541",-,-,-,100,TK_Complete,01/02/2017,24/01/2017,27/12/2017,27/12/2017,"","","SI1BBT3-80 FS","SI1BBT3-80",79,114,126,162,18,26,29,37,1,,"CCGT D1_Integrated Programme Schedule;OEM (Engineering & Deliverables);GAS AND STEAM TURBINE AREA;STRUCTURE FOR  GENERATOR AND AUX. TRANSFORMERS   UBF/UBE/UBL;Unit Auxiliary Transformer BBT",0,1,0.0,0.0004069176,0.0,329,0.4,0.0000812387,0.0,0.0030769231,0.0,0.0010443864,0.0,0.7376681614,0.4,0.0
1.5.10.9.2-3,SI1BBT4-27,"TRANSPORT AUXILIARY TRANSFORMER BBT",7112,"CCGTD1_IPS",TT_Task,"61541",-,-,-,100,TK_Complete,26/02/2018,31/01/2018,28/02/2018,03/02/2018,"SI1BBT3-80 FS","SI1BBT3-80","","",134,167,135,168,31,39,31,39,19,,"CCGT D1_Integrated Programme Schedule;OEM (Engineering & Deliverables);GAS AND STEAM TURBINE AREA;STRUCTURE FOR  GENERATOR AND AUX. TRANSFORMERS   UBF/UBE/UBL;Unit Auxiliary Transformer BBT",1,0,0.0,0.0,0.0004069176,2,0.8,0.0001503957,0.0068493151,0.0,0.0,0.0,0.0012870013,0.0044843049,0.8,0.0283369572
1.5.10.9.3,61540,"Generator Transformer BAT / BBT",7112,"CCGTD1_IPS",WBS,"61534",,,,100,Complete,26/11/2016,14/11/2016,26/08/2020,05/05/2018,,,,,69,104,265,181,16,24,61,42,,,"CCGT D1_Integrated Programme Schedule;OEM (Engineering & Deliverables);GAS AND STEAM TURBINE AREA;STRUCTURE FOR  GENERATOR AND AUX. TRANSFORMERS   UBF/UBE/UBL"
1.5.10.9.3-1,SI1BAT3-25,"MANUFACTURING, SHOP TEST MAIN TRANSFORMER BAT",7112,"CCGTD1_IPS",TT_Task,"61540",-,-,-,100,TK_Complete,01/02/2017,24/01/2017,27/12/2017,02/03/2018,"","","SI1BAT3-80 FS","SI1BAT3-80",79,114,126,172,18,26,29,40,1,,"CCGT D1_Integrated Programme Schedule;OEM (Engineering & Deliverables);GAS AND STEAM TURBINE AREA;STRUCTURE FOR  GENERATOR AND AUX. TRANSFORMERS   UBF/UBE/UBL;Generator Transformer BAT / BBT",0,1,0.0,0.0004069176,0.0,329,0.0,0.0000812387,0.0,0.0030769231,0.0,0.0010443864,0.0,0.7376681614,0.0,0.0
1.5.10.9.3-2,SI1BAT4-27,"TRANSPORT MAIN TRANSFORMER BAT",7112,"CCGTD1_IPS",TT_Task,"61540",-,-,-,100,TK_Complete,02/05/2018,03/05/2018,16/05/2018,05/05/2018,"SI1BAT3-80 FS","SI1BAT3-80","","",144,180,146,181,33,42,34,42,26,,"CCGT D1_Integrated Programme Schedule;OEM (Engineering & Deliverables);GAS AND STEAM TURBINE AREA;STRUCTURE FOR  GENERATOR AND AUX. TRANSFORMERS   UBF/UBE/UBL;Generator Transformer BAT / BBT",1,0,0.0,0.0,0.0004069176,14,1.0,0.0001503957,0.0068493151,0.0,0.0,0.0,0.0012870013,0.0313901345,1.0,0.0283369572
1.5.10.9.3-3,SI1BAT3-80,"(RFS) READY FOR SHIPMENT MAIN TRANSFORMER BAT",7112,"CCGTD1_IPS",TT_FinMile,"61540",-,-,-,100,TK_Complete,26/08/2020,30/04/2018,26/08/2020,30/04/2018,"SI1BAT3-25 FS","SI1BAT3-25","SI1BAT4-27 FS","SI1BAT4-27",265,180,265,180,61,42,61,42,96,,"CCGT D1_Integrated Programme Schedule;OEM (Engineering & Deliverables);GAS AND STEAM TURBINE AREA;STRUCTURE FOR  GENERATOR AND AUX. TRANSFORMERS   UBF/UBE/UBL;Generator Transformer BAT / BBT",1,1,0.0000000414,0.0002034588,0.0002034588,0,1.0,0.0000812387,0.0068493151,0.0030769231,0.0000625,0.0005221932,0.0006435006,0.0,1.0,0.0
1.5.10.9.4,61539,"Generator Isolated Phase Busduct BAA",7112,"CCGTD1_IPS",WBS,"61534",,,,100,Complete,01/09/2017,31/07/2017,05/10/2020,20/06/2018,,,,,109,141,270,187,25,33,63,43,,,"CCGT D1_Integrated Programme Schedule;OEM (Engineering & Deliverables);GAS AND STEAM TURBINE AREA;STRUCTURE FOR  GENERATOR AND AUX. TRANSFORMERS   UBF/UBE/UBL"
1.5.10.9.4-1,SI1BAA3-80,"(RFS) READY FOR SHIPMENT IPB BAA",7112,"CCGTD1_IPS",TT_FinMile,"61539",-,-,-,100,TK_Complete,27/03/2018,27/02/2018,27/03/2018,27/02/2018,"SI1BAA3-25 FS","SI1BAA3-25","SI1BAA4-27 FS","SI1BAA4-27",138,171,138,171,32,40,32,40,23,,"CCGT D1_Integrated Programme Schedule;OEM (Engineering & Deliverables);GAS AND STEAM TURBINE AREA;STRUCTURE FOR  GENERATOR AND AUX. TRANSFORMERS   UBF/UBE/UBL;Generator Isolated Phase Busduct BAA",1,1,0.0000000414,0.0002034588,0.0002034588,0,1.0,0.0000812387,0.0068493151,0.0030769231,0.0000625,0.0005221932,0.0006435006,0.0,1.0,0.0
1.5.10.9.4-2,SI1BAA3-25,"MANUFACTURING, SHOP TEST IPB BAA",7112,"CCGTD1_IPS",TT_Task,"61539",-,-,-,100,TK_Complete,01/09/2017,31/07/2017,01/03/2018,27/02/2018,"","","SI1BAA3-80 FS","SI1BAA3-80",109,141,135,171,25,33,31,40,11,,"CCGT D1_Integrated Programme Schedule;OEM (Engineering & Deliverables);GAS AND STEAM TURBINE AREA;STRUCTURE FOR  GENERATOR AND AUX. TRANSFORMERS   UBF/UBE/UBL;Generator Isolated Phase Busduct BAA",0,1,0.0,0.0004069176,0.0,181,0.0,0.0000812387,0.0,0.0030769231,0.0,0.0010443864,0.0,0.4058295964,0.0,0.0
1.5.10.9.4-3,SI1BAA4-27,"TRANSPORT IPB BAA",7112,"CCGTD1_IPS",TT_Task,"61539",-,-,-,100,TK_Complete,26/08/2020,07/05/2018,05/10/2020,20/06/2018,"SI1BAA3-80 FS","SI1BAA3-80","","",265,181,270,187,61,42,63,43,96,,"CCGT D1_Integrated Programme Schedule;OEM (Engineering & Deliverables);GAS AND STEAM TURBINE AREA;STRUCTURE FOR  GENERATOR AND AUX. TRANSFORMERS   UBF/UBE/UBL;Generator Isolated Phase Busduct BAA",1,0,0.0,0.0,0.0004069176,40,0.8,0.0001503957,0.0068493151,0.0,0.0,0.0,0.0012870013,0.0896860987,0.8,0.0283369572
1.5.10.9.5,61538,"Concrete / Formwork / Reinforcement UBL",7112,"CCGTD1_IPS",WBS,"61534",,,,100,Complete,25/06/2017,01/05/2017,27/05/2018,27/06/2018,,,,,99,128,147,188,23,29,34,44,,,"CCGT D1_Integrated Programme Schedule;OEM (Engineering & Deliverables);GAS AND STEAM TURBINE AREA;STRUCTURE FOR  GENERATOR AND AUX. TRANSFORMERS   UBF/UBE/UBL"
1.5.10.9.5-1,SI1UBL3-60,"FABRICATION DESIGN, FABRICATION, TRANSPORT, ON SITE STEEL PLATFORM UBL",7112,"CCGTD1_IPS",TT_Task,"61538",-,-,-,100,TK_Complete,26/01/2018,29/12/2017,27/05/2018,27/06/2018,"SI1UBD3-70 SS,SI1UBL2-60 FS","SI1UBD3-70,SI1UBL2-60","","",130,163,147,188,30,38,34,44,16,,"CCGT D1_Integrated Programme Schedule;OEM (Engineering & Deliverables);GAS AND STEAM TURBINE AREA;STRUCTURE FOR  GENERATOR AND AUX. TRANSFORMERS   UBF/UBE/UBL;Concrete / Formwork / Reinforcement UBL",2,0,0.0,0.0,0.0018311292,121,0.0,0.000256796,0.0136986301,0.0,0.0,0.0,0.0057915058,0.2713004484,0.0,0.0719342837
1.5.10.9.5-2,SI1UBL2-60,"(MS3) CONCRETE STRUCTURE FINAL DIMENSIONS LOADS AVAILABLE UBL",7112,"CCGTD1_IPS",TT_FinMile,"61538",-,-,-,100,TK_Complete,25/06/2017,15/05/2017,25/06/2017,15/05/2017,"SI-3412-20 FS","SI-3412-20","SI1UBL2-45 FF,SI1UBL3-60 FS","SI1UBL2-45,SI1UBL3-60",99,130,99,130,23,30,23,30,7,,"CCGT D1_Integrated Programme Schedule;OEM (Engineering & Deliverables);GAS AND STEAM TURBINE AREA;STRUCTURE FOR  GENERATOR AND AUX. TRANSFORMERS   UBF/UBE/UBL;Concrete / Formwork / Reinforcement UBL",1,2,0.0000000828,0.0004069176,0.0004069176,0,1.0,0.0000812387,0.0068493151,0.0061538462,0.000125,0.0010443864,0.0012870013,0.0,1.0,0.0
1.5.10.9.5-3,SI1UBL2-45,"PREPARATION BASIC BUILDING DWGS  UBL",7112,"CCGTD1_IPS",TT_Task,"61538",-,-,-,100,TK_Complete,26/06/2017,01/05/2017,30/07/2017,24/05/2017,"SI1UBL2-60 FF,SI-3412-20 FS","SI1UBL2-60,SI-3412-20","","",99,128,104,131,23,29,24,30,8,,"CCGT D1_Integrated Programme Schedule;OEM (Engineering & Deliverables);GAS AND STEAM TURBINE AREA;STRUCTURE FOR  GENERATOR AND AUX. TRANSFORMERS   UBF/UBE/UBL;Concrete / Formwork / Reinforcement UBL",2,0,0.0,0.0,0.0006103764,34,1.0,0.0000999025,0.0136986301,0.0,0.0,0.0,0.0019305019,0.0762331839,1.0,0.0076474334
1.5.10.9.6,61537,"Steelworks UBF/UBE",7112,"CCGTD1_IPS",WBS,"61534",,,,100,Complete,25/07/2017,18/07/2017,07/05/2018,27/06/2018,,,,,103,139,144,188,24,32,33,44,,,"CCGT D1_Integrated Programme Schedule;OEM (Engineering & Deliverables);GAS AND STEAM TURBINE AREA;STRUCTURE FOR  GENERATOR AND AUX. TRANSFORMERS   UBF/UBE/UBL"
1.5.10.9.6-1,SI1UBF3B70,"FABRICATION DESIGN, FABRICATION, TRANSPORT, ON SITE STEEL PLATFORM UBF",7112,"CCGTD1_IPS",TT_Task,"61537",-,-,-,100,TK_Complete,26/01/2018,29/12/2017,07/05/2018,27/06/2018,"SI1UBF2B70 FS,SI1UBD3-70 SS","SI1UBF2B70,SI1UBD3-70","","",130,163,144,188,30,38,33,44,16,,"CCGT D1_Integrated Programme Schedule;OEM (Engineering & Deliverables);GAS AND STEAM TURBINE AREA;STRUCTURE FOR  GENERATOR AND AUX. TRANSFORMERS   UBF/UBE/UBL;Steelworks UBF/UBE",2,0,0.0,0.0,0.002034588,101,0.0,0.00031072,0.0136986301,0.0,0.0,0.0,0.0064350064,0.2264573991,0.0,0.0940295325
1.5.10.9.6-2,SI1UBF2B60,"(MS3) STEEL STRUCTURE, FINAL DIMENSIONS AND LOADS AVAILABLE UBF/UBE",7112,"CCGTD1_IPS",TT_FinMile,"61537",-,-,-,100,TK_Complete,25/07/2017,18/07/2017,25/07/2017,18/07/2017,"SI-M--2C20 FS","SI-M--2C20","SI1UBF2B70 FS","SI1UBF2B70",103,139,103,139,24,32,24,32,9,,"CCGT D1_Integrated Programme Schedule;OEM (Engineering & Deliverables);GAS AND STEAM TURBINE AREA;STRUCTURE FOR  GENERATOR AND AUX. TRANSFORMERS   UBF/UBE/UBL;Steelworks UBF/UBE",1,1,0.0000001656,0.0004069176,0.0004069176,0,1.0,0.0000812387,0.0068493151,0.0030769231,0.00025,0.0010443864,0.0012870013,0.0,1.0,0.0
1.5.10.9.6-3,SI1UBF2B70,"DETAIL DESIGN / CHECKER STEEL STRUCTURE UBF/UBE",7112,"CCGTD1_IPS",TT_Task,"61537",-,-,-,100,TK_Complete,25/07/2017,19/07/2017,18/09/2017,09/10/2017,"SI1UBF2B60 FS","SI1UBF2B60","SI1UBF3B70 FS","SI1UBF3B70",103,139,111,151,24,32,26,35,9,,"CCGT D1_Integrated Programme Schedule;OEM (Engineering & Deliverables);GAS AND STEAM TURBINE AREA;STRUCTURE FOR  GENERATOR AND AUX. TRANSFORMERS   UBF/UBE/UBL;Steelworks UBF/UBE",1,1,0.0000001242,0.0002034588,0.0006103764,55,0.0,0.0001503957,0.0068493151,0.0030769231,0.0001875,0.0005221932,0.0019305019,0.1233183857,0.0,0.0283369572
1.5.10.9.7,61536,"Concrete / Formwork / Reinforcement UBF/UBE",7112,"CCGTD1_IPS",WBS,"61534",,,,100,Complete,01/06/2017,04/05/2017,05/07/2017,24/05/2017,,,,,96,128,101,131,22,30,23,30,,,"CCGT D1_Integrated Programme Schedule;OEM (Engineering & Deliverables);GAS AND STEAM TURBINE AREA;STRUCTURE FOR  GENERATOR AND AUX. TRANSFORMERS   UBF/UBE/UBL"
1.5.10.9.7-1,SI1UBF2-45,"PREPARATION BASIC BUILDING DWGS UBF/UBE",7112,"CCGTD1_IPS",TT_Task,"61536",-,-,-,100,TK_Complete,01/06/2017,04/05/2017,05/07/2017,24/05/2017,"SI-3412-20 FS,SI1UBF2-60 FF","SI-3412-20,SI1UBF2-60","SI1BZP2I30 FS","SI1BZP2I30",96,128,101,131,22,30,23,30,6,,"CCGT D1_Integrated Programme Schedule;OEM (Engineering & Deliverables);GAS AND STEAM TURBINE AREA;STRUCTURE FOR  GENERATOR AND AUX. TRANSFORMERS   UBF/UBE/UBL;Concrete / Formwork / Reinforcement UBF/UBE",2,1,0.0000001242,0.0002034588,0.0006103764,34,1.0,0.0001538896,0.0136986301,0.0030769231,0.0001875,0.0005221932,0.0019305019,0.0762331839,1.0,0.029768542
1.5.10.9.7-2,SI1UBF2-60,"(MS3) CONCRETE STRUCTURE FINAL DIMENSIONS LOADS AVAILABLE UBF/UBE",7112,"CCGTD1_IPS",TT_FinMile,"61536",-,-,-,100,TK_Complete,15/06/2017,17/05/2017,15/06/2017,17/05/2017,"","","SI1UBF2-45 FF","SI1UBF2-45",98,130,98,130,22,30,22,30,7,,"CCGT D1_Integrated Programme Schedule;OEM (Engineering & Deliverables);GAS AND STEAM TURBINE AREA;STRUCTURE FOR  GENERATOR AND AUX. TRANSFORMERS   UBF/UBE/UBL;Concrete / Formwork / Reinforcement UBF/UBE",0,1,0.0,0.0004069176,0.0,0,1.0,0.0000812387,0.0,0.0030769231,0.0,0.0010443864,0.0,0.0,1.0,0.0
1.5.10.9.8,61535,"Concrete / Formwork / Reinforcement UBD",7112,"CCGTD1_IPS",WBS,"61534",,,,100,Complete,31/05/2017,10/05/2017,07/05/2018,27/06/2018,,,,,96,129,144,188,22,30,33,44,,,"CCGT D1_Integrated Programme Schedule;OEM (Engineering & Deliverables);GAS AND STEAM TURBINE AREA;STRUCTURE FOR  GENERATOR AND AUX. TRANSFORMERS   UBF/UBE/UBL"
1.5.10.9.8-1,SI1UBD3-70,"FABRICATION DESIGN, FABRICATION, TRANSPORT, ON SITE STEEL PLATFORM UBD",7112,"CCGTD1_IPS",TT_Task,"61535",-,-,-,100,TK_Complete,26/01/2018,29/12/2017,07/05/2018,27/06/2018,"SI1UBD2-70 FS","SI1UBD2-70","SI1UBF3B70 SS,SI1UBL3-60 SS","SI1UBF3B70,SI1UBL3-60",130,163,144,188,30,38,33,44,16,,"CCGT D1_Integrated Programme Schedule;OEM (Engineering & Deliverables);GAS AND STEAM TURBINE AREA;STRUCTURE FOR  GENERATOR AND AUX. TRANSFORMERS   UBF/UBE/UBL;Concrete / Formwork / Reinforcement UBD",1,2,0.000000414,0.0004069176,0.0014242116,101,0.0,0.0002619114,0.0068493151,0.0061538462,0.000625,0.0010443864,0.0045045045,0.2264573991,0.0,0.074030275
1.5.10.9.8-2,SI1UBD2-70,"DETAIL DESIGN / CHECKER CONCRETE STRUCTURE UBD01/02/03/04",7112,"CCGTD1_IPS",TT_Task,"61535",-,-,-,100,TK_Complete,09/07/2017,10/06/2017,10/09/2017,30/06/2017,"SI1UBD2-45 FS","SI1UBD2-45","SI1UBD3-70 FS","SI1UBD3-70",101,134,110,137,23,31,25,31,9,,"CCGT D1_Integrated Programme Schedule;OEM (Engineering & Deliverables);GAS AND STEAM TURBINE AREA;STRUCTURE FOR  GENERATOR AND AUX. TRANSFORMERS   UBF/UBE/UBL;Concrete / Formwork / Reinforcement UBD",1,1,0.0000005797,0.0006103764,0.0012207528,63,1.0,0.0002122171,0.0068493151,0.0030769231,0.000875,0.0015665796,0.0038610039,0.1412556054,1.0,0.0536681293
1.5.10.9.8-3,SI1UBD2-60,"(MS3) CONCRETE STRUCTURE FINAL DIMENSIONS LOADS AVAILABLE UBD01/02/03/04",7112,"CCGTD1_IPS",TT_FinMile,"61535",-,-,-,100,TK_Complete,31/05/2017,23/05/2017,31/05/2017,23/05/2017,"SI-3412-20 FS,SI-M--2C20 FS","SI-3412-20,SI-M--2C20","SI1UBD2-45 FF","SI1UBD2-45",96,131,96,131,22,30,22,30,6,,"CCGT D1_Integrated Programme Schedule;OEM (Engineering & Deliverables);GAS AND STEAM TURBINE AREA;STRUCTURE FOR  GENERATOR AND AUX. TRANSFORMERS   UBF/UBE/UBL;Concrete / Formwork / Reinforcement UBD",2,1,0.0000003312,0.001017294,0.0008138352,0,1.0,0.0000812387,0.0136986301,0.0030769231,0.0005,0.0026109661,0.0025740026,0.0,1.0,0.0
1.5.10.9.8-4,SI1UBD2-45,"PREPARATION BASIC BUILDING DWGS UBD01/02/03/04",7112,"CCGTD1_IPS",TT_Task,"61535",-,-,-,100,TK_Complete,01/06/2017,10/05/2017,05/07/2017,09/06/2017,"SI1UBD2-60 FF,SI-3412-20 FS","SI1UBD2-60,SI-3412-20","SI1UBD2-70 FS","SI1UBD2-70",96,129,101,134,22,30,23,31,6,,"CCGT D1_Integrated Programme Schedule;OEM (Engineering & Deliverables);GAS AND STEAM TURBINE AREA;STRUCTURE FOR  GENERATOR AND AUX. TRANSFORMERS   UBF/UBE/UBL;Concrete / Formwork / Reinforcement UBD",2,1,0.0000006625,0.0008138352,0.001017294,34,1.0,0.0001538896,0.0136986301,0.0030769231,0.001,0.0020887728,0.0032175032,0.0762331839,1.0,0.029768542
1.5.10.10,61524,"STRUCTURE FOR POWER CONTROL CENTER",7112,"CCGTD1_IPS",WBS,"61464",,,,100,Complete,14/02/2017,01/02/2017,12/12/2021,20/09/2018,,,,,80,115,332,200,18,27,77,46,,,"CCGT D1_Integrated Programme Schedule;OEM (Engineering & Deliverables);GAS AND STEAM TURBINE AREA"
1.5.10.10.1,61533,"SEE/SFC Transformer / MKC/MBJ",7112,"CCGTD1_IPS",WBS,"61524",,,,100,Complete,14/02/2017,01/02/2017,09/05/2018,01/05/2018,,,,,80,115,145,180,18,27,33,42,,,"CCGT D1_Integrated Programme Schedule;OEM (Engineering & Deliverables);GAS AND STEAM TURBINE AREA;STRUCTURE FOR POWER CONTROL CENTER"
1.5.10.10.1-1,SP1MKC3-65,"FINAL CHECK & DISPATCH SEE/SFC TRANSFORMER MKC / MBJ",7112,"CCGTD1_IPS",TT_Task,"61533",-,-,-,100,TK_Complete,16/12/2017,13/12/2017,22/12/2017,19/12/2017,"SP1MKC3-25 FS","SP1MKC3-25","SP1MKC3-80 FS","SP1MKC3-80",124,160,125,161,29,37,29,37,16,,"CCGT D1_Integrated Programme Schedule;OEM (Engineering & Deliverables);GAS AND STEAM TURBINE AREA;STRUCTURE FOR POWER CONTROL CENTER;SEE/SFC Transformer / MKC/MBJ",1,1,0.0,0.0006103764,0.0006103764,6,1.0,0.000209244,0.0068493151,0.0030769231,0.0,0.0015665796,0.0019305019,0.0134529148,1.0,0.0524499399
1.5.10.10.1-2,SP1MKC3-80,"DELIVERY SEE/SFC TRANSFORMER GT MKC / MBJ EX WORKS",7112,"CCGTD1_IPS",TT_Mile,"61533",-,-,-,100,TK_Complete,30/01/2018,20/12/2017,30/01/2018,20/12/2017,"SP1MKC3-25 FS,SP1MKC3-65 FS","SP1MKC3-25,SP1MKC3-65","SI1MBJ4-27 FS","SI1MBJ4-27",130,161,130,161,30,37,30,37,18,,"CCGT D1_Integrated Programme Schedule;OEM (Engineering & Deliverables);GAS AND STEAM TURBINE AREA;STRUCTURE FOR POWER CONTROL CENTER;SEE/SFC Transformer / MKC/MBJ",2,1,0.0000003312,0.0004069176,0.0008138352,0,1.0,0.0000812387,0.0136986301,0.0030769231,0.0005,0.0010443864,0.0025740026,0.0,1.0,0.0
1.5.10.10.1-3,SP1MKC2-80,"ORDERING / NEGOTIATIONS SEE/SFC TRANSFORMER MKC / MBJ",7112,"CCGTD1_IPS",TT_Task,"61533",-,-,-,100,TK_Complete,14/02/2017,01/02/2017,01/03/2017,01/03/2017,"","","SP1MKC2-85 FS","SP1MKC2-85",80,115,83,119,18,27,19,27,2,,"CCGT D1_Integrated Programme Schedule;OEM (Engineering & Deliverables);GAS AND STEAM TURBINE AREA;STRUCTURE FOR POWER CONTROL CENTER;SEE/SFC Transformer / MKC/MBJ",0,1,0.0,0.0054933876,0.0,15,0.0,0.0000812387,0.0,0.0030769231,0.0,0.0140992167,0.0,0.033632287,0.0,0.0
1.5.10.10.1-4,SP1MKC2-85,"ORDER PLACED SEE/SFC TRANSFORMER MKC / MBJ",7112,"CCGTD1_IPS",TT_Mile,"61533",-,-,-,100,TK_Complete,17/03/2017,02/03/2017,17/03/2017,02/03/2017,"SP1MKC2-80 FS","SP1MKC2-80","SP1MKC3-25 FS,SI-B--2A55 FS","SP1MKC3-25,SI-B--2A55",85,119,85,119,19,27,19,27,3,,"CCGT D1_Integrated Programme Schedule;OEM (Engineering & Deliverables);GAS AND STEAM TURBINE AREA;STRUCTURE FOR POWER CONTROL CENTER;SEE/SFC Transformer / MKC/MBJ",1,2,0.0000010765,0.0052899288,0.0002034588,0,1.0,0.0000812387,0.0068493151,0.0061538462,0.001625,0.0135770235,0.0006435006,0.0,1.0,0.0
1.5.10.10.1-5,SP1MKC3-25,"MANUFACTURING SEE/SFC TRANSFORMER MKC / MBJ",7112,"CCGTD1_IPS",TT_Task,"61533",-,-,-,100,TK_Complete,17/03/2017,02/03/2017,22/12/2017,12/12/2017,"SP1MKC2-85 FS","SP1MKC2-85","SP1MKC3-80 FS,SP1MKC3-65 FS","SP1MKC3-80,SP1MKC3-65",85,119,125,160,19,27,29,37,3,,"CCGT D1_Integrated Programme Schedule;OEM (Engineering & Deliverables);GAS AND STEAM TURBINE AREA;STRUCTURE FOR POWER CONTROL CENTER;SEE/SFC Transformer / MKC/MBJ",1,2,0.0000003312,0.0008138352,0.0004069176,280,0.4,0.0001503957,0.0068493151,0.0061538462,0.0005,0.0020887728,0.0012870013,0.6278026906,0.4,0.0283369572
1.5.10.10.1-6,SI1MBJ4-27,"PREPARATION FOR DISPATCH TO SITE SEE/SFC TRANSFORMER MBJ",7112,"CCGTD1_IPS",TT_Task,"61533",-,-,-,100,TK_Complete,26/01/2018,15/12/2017,11/03/2018,15/01/2018,"SP1MKC3-80 FS","SP1MKC3-80","SI1MKC4-27 FS","SI1MKC4-27",130,161,136,165,30,37,31,38,17,,"CCGT D1_Integrated Programme Schedule;OEM (Engineering & Deliverables);GAS AND STEAM TURBINE AREA;STRUCTURE FOR POWER CONTROL CENTER;SEE/SFC Transformer / MKC/MBJ",1,1,0.000000207,0.0002034588,0.001017294,44,1.0,0.0001503957,0.0068493151,0.0030769231,0.0003125,0.0005221932,0.0032175032,0.0986547085,1.0,0.0283369572
1.5.10.10.1-7,SI1MBJ4-25,"TRANSPORT TO SITE SFC TRANSFORMER MBJ",7112,"CCGTD1_IPS",TT_Task,"61533",-,-,-,100,TK_Complete,01/03/2018,18/01/2018,09/05/2018,01/04/2018,"","","","",135,165,145,176,31,38,33,41,21,,"CCGT D1_Integrated Programme Schedule;OEM (Engineering & Deliverables);GAS AND STEAM TURBINE AREA;STRUCTURE FOR POWER CONTROL CENTER;SEE/SFC Transformer / MKC/MBJ",0,0,0.0,0.0,0.0,69,0.4,0.0000812387,0.0,0.0,0.0,0.0,0.0,0.1547085202,0.4,0.0
1.5.10.10.1-8,SI1MKC4-27,"TRANSPORT TO SITE SEE TRANSFORMER MKC",7112,"CCGTD1_IPS",TT_Task,"61533",-,-,-,100,TK_Complete,26/03/2018,23/03/2018,26/04/2018,01/05/2018,"SI1MBJ4-27 FS","SI1MBJ4-27","","",138,175,143,180,32,40,33,42,23,,"CCGT D1_Integrated Programme Schedule;OEM (Engineering & Deliverables);GAS AND STEAM TURBINE AREA;STRUCTURE FOR POWER CONTROL CENTER;SEE/SFC Transformer / MKC/MBJ",1,0,0.0,0.0,0.0012207528,31,0.2,0.000209244,0.0068493151,0.0,0.0,0.0,0.0038610039,0.0695067265,0.2,0.0524499399
1.5.10.10.2,61532,"Protection, Sychronisation, Measuring",7112,"CCGTD1_IPS",WBS,"61524",,,,100,Complete,26/08/2017,15/08/2017,07/06/2018,30/06/2018,,,,,108,143,149,189,25,33,34,44,,,"CCGT D1_Integrated Programme Schedule;OEM (Engineering & Deliverables);GAS AND STEAM TURBINE AREA;STRUCTURE FOR POWER CONTROL CENTER"
1.5.10.10.2-1,SI1CHA4-12,"TRANSPORT TO SITE PROT., SYNCHR., METERING CHA",7112,"CCGTD1_IPS",TT_Task,"61532",-,-,-,100,TK_Complete,27/04/2018,27/05/2018,07/06/2018,30/06/2018,"SI1CHA3-80 FS","SI1CHA3-80","","",143,184,149,189,33,43,34,44,26,,"CCGT D1_Integrated Programme Schedule;OEM (Engineering & Deliverables);GAS AND STEAM TURBINE AREA;STRUCTURE FOR POWER CONTROL CENTER;Protection, Sychronisation, Measuring",1,0,0.0,0.0,0.0004069176,41,1.0,0.0001503957,0.0068493151,0.0,0.0,0.0,0.0012870013,0.0919282511,1.0,0.0283369572
1.5.10.10.2-2,SI1CHA3-80,"(RFS) READY FOR SHIPMENT PROT./SYNCHR./METERING CHA",7112,"CCGTD1_IPS",TT_FinMile,"61532",-,-,-,100,TK_Complete,26/04/2018,25/04/2018,26/04/2018,25/04/2018,"SI1CHA3-25 FS","SI1CHA3-25","SI1CHA4-12 FS","SI1CHA4-12",143,179,143,179,33,41,33,41,26,,"CCGT D1_Integrated Programme Schedule;OEM (Engineering & Deliverables);GAS AND STEAM TURBINE AREA;STRUCTURE FOR POWER CONTROL CENTER;Protection, Sychronisation, Measuring",1,1,0.0000000414,0.0002034588,0.0002034588,0,1.0,0.0000812387,0.0068493151,0.0030769231,0.0000625,0.0005221932,0.0006435006,0.0,1.0,0.0
1.5.10.10.2-3,SI1CHA3-25,"MANUFACTURING, SHOP TEST PROT./SYNCHR./METERING CHA",7112,"CCGTD1_IPS",TT_Task,"61532",-,-,-,100,TK_Complete,26/08/2017,15/08/2017,05/03/2018,13/04/2018,"","","SI1CHA3-80 FS","SI1CHA3-80",108,143,135,178,25,33,31,41,10,,"CCGT D1_Integrated Programme Schedule;OEM (Engineering & Deliverables);GAS AND STEAM TURBINE AREA;STRUCTURE FOR POWER CONTROL CENTER;Protection, Sychronisation, Measuring",0,1,0.0,0.0004069176,0.0,191,0.0,0.0000812387,0.0,0.0030769231,0.0,0.0010443864,0.0,0.4282511211,0.0,0.0
1.5.10.10.3,61531,"Cabinets for I&C 10UBA Building",7112,"CCGTD1_IPS",WBS,"61524",,,,100,Complete,26/02/2018,23/01/2018,04/08/2018,25/08/2018,,,,,134,166,157,197,31,38,36,46,,,"CCGT D1_Integrated Programme Schedule;OEM (Engineering & Deliverables);GAS AND STEAM TURBINE AREA;STRUCTURE FOR POWER CONTROL CENTER"
1.5.10.10.3-1,SI1UBA4G27,"TRANSPORT TO SITE CABINET 10UBA BUILDING",7112,"CCGTD1_IPS",TT_Task,"61531",-,-,-,100,TK_Complete,06/06/2018,25/07/2018,04/08/2018,25/08/2018,"SI1UBA3G80 FS","SI1UBA3G80","SI-CFE4-25 SS","SI-CFE4-25",149,192,157,197,34,44,36,46,30,,"CCGT D1_Integrated Programme Schedule;OEM (Engineering & Deliverables);GAS AND STEAM TURBINE AREA;STRUCTURE FOR POWER CONTROL CENTER;Cabinets for I&C 10UBA Building",1,1,0.0000065418,0.0004069176,0.0160732452,59,1.0,0.0001503957,0.0068493151,0.0030769231,0.009875,0.0010443864,0.0508365508,0.1322869955,1.0,0.0283369572
1.5.10.10.3-2,SI1UBA3G80,"(RFS) READY FOR SHIPMENT CABINET 10UBA BUILDING",7112,"CCGTD1_IPS",TT_FinMile,"61531",-,-,-,100,TK_Complete,05/06/2018,25/07/2018,05/06/2018,25/07/2018,"SI-C--3B25 FS,SI1UBA3G60 FS,SI-CP-3-25 FS,SI-C--3C25 FS,SI-CR-3-25 FS","SI-C--3B25,SI1UBA3G60,SI-CP-3-25,SI-C--3C25,SI-CR-3-25","SI1UBA4G27 FS,SI1UBA3G60# FF","SI1UBA4G27,SI1UBA3G60#",148,192,148,192,34,44,34,44,30,,"CCGT D1_Integrated Programme Schedule;OEM (Engineering & Deliverables);GAS AND STEAM TURBINE AREA;STRUCTURE FOR POWER CONTROL CENTER;Cabinets for I&C 10UBA Building",5,1,0.0000096885,0.0006103764,0.0158697864,0,1.0,0.0000812387,0.0342465753,0.0030769231,0.014625,0.0015665796,0.0501930502,0.0,1.0,0.0
1.5.10.10.3-3,SI1UBA3G58,"CABINET AT WORKSHOP FOR SHOP TEST CABINET 10UBA BUILDING",7112,"CCGTD1_IPS",TT_Mile,"61531",-,-,-,100,TK_Complete,26/02/2018,23/01/2018,26/02/2018,23/01/2018,"SI1CJ-4-25 FS","SI1CJ-4-25","SI1UBA3G60 FS","SI1UBA3G60",134,166,134,166,31,38,31,38,19,,"CCGT D1_Integrated Programme Schedule;OEM (Engineering & Deliverables);GAS AND STEAM TURBINE AREA;STRUCTURE FOR POWER CONTROL CENTER;Cabinets for I&C 10UBA Building",1,1,0.00000236,0.001017294,0.0063072228,0,1.0,0.0000812387,0.0068493151,0.0030769231,0.0035625,0.0026109661,0.0199485199,0.0,1.0,0.0
1.5.10.10.3-4,SI1UBA3G60,"PREPARATION, SHOP TEST, DISMANTLING CABINET 10UBA BUILDING",7112,"CCGTD1_IPS",TT_Task,"61531",-,-,-,100,TK_Complete,26/03/2018,03/03/2018,03/06/2018,30/06/2018,"SI-C--2B70 FS,SI1UBA3G58 FS","SI-C--2B70,SI1UBA3G58","SI1UBA3G60# FF,SI1UBA3G80 FS","SI1UBA3G60#,SI1UBA3G80",138,172,148,189,32,40,34,44,23,,"CCGT D1_Integrated Programme Schedule;OEM (Engineering & Deliverables);GAS AND STEAM TURBINE AREA;STRUCTURE FOR POWER CONTROL CENTER;Cabinets for I&C 10UBA Building",2,1,0.0000082808,0.0008138352,0.0138351984,69,0.0,0.0002195528,0.0136986301,0.0030769231,0.0125,0.0020887728,0.0437580438,0.1547085202,0.0,0.0566739144
1.5.10.10.4,61530,"Cabinets & PCCs for Single Shaft",7112,"CCGTD1_IPS",WBS,"61524",,,,100,Complete,19/10/2017,18/09/2017,09/04/2018,25/07/2018,,,,,116,148,140,192,27,34,32,44,,,"CCGT D1_Integrated Programme Schedule;OEM (Engineering & Deliverables);GAS AND STEAM TURBINE AREA;STRUCTURE FOR POWER CONTROL CENTER"
1.5.10.10.5,61529,"LV Switchgear (no PR Scope) BFA",7112,"CCGTD1_IPS",WBS,"61524",,,,100,Complete,30/10/2017,30/09/2017,15/07/2018,20/09/2018,,,,,117,150,154,200,27,35,36,46,,,"CCGT D1_Integrated Programme Schedule;OEM (Engineering & Deliverables);GAS AND STEAM TURBINE AREA;STRUCTURE FOR POWER CONTROL CENTER"
1.5.10.10.5-1,SI1BFA3-25,"MANUFACTURING, SHOP TEST LV-/DC-SWITCHGEAR BFA",7112,"CCGTD1_IPS",TT_Task,"61529",-,-,-,100,TK_Complete,30/10/2017,30/09/2017,25/02/2018,25/06/2018,"","","SI1BFA3-80 FS","SI1BFA3-80",117,150,134,188,27,35,31,43,13,,"CCGT D1_Integrated Programme Schedule;OEM (Engineering & Deliverables);GAS AND STEAM TURBINE AREA;STRUCTURE FOR POWER CONTROL CENTER;LV Switchgear (no PR Scope) BFA",0,1,0.0,0.0004069176,0.0,118,0.0,0.0000812387,0.0,0.0030769231,0.0,0.0010443864,0.0,0.264573991,0.0,0.0
1.5.10.10.5-2,SI1BFA4-12,"TRANSPORT TO SITE LV-/DC-SWITCHGEAR BFA",7112,"CCGTD1_IPS",TT_Task,"61529",-,-,-,100,TK_Complete,17/05/2018,14/08/2018,15/07/2018,20/09/2018,"SI1BFA3-80 FS","SI1BFA3-80","","",146,195,154,200,34,45,36,46,28,,"CCGT D1_Integrated Programme Schedule;OEM (Engineering & Deliverables);GAS AND STEAM TURBINE AREA;STRUCTURE FOR POWER CONTROL CENTER;LV Switchgear (no PR Scope) BFA",1,0,0.0,0.0,0.0004069176,59,1.0,0.0001503957,0.0068493151,0.0,0.0,0.0,0.0012870013,0.1322869955,1.0,0.0283369572
1.5.10.10.5-3,SI1BFA3-80,"(RFS) READY FOR SHIPMENT LV-/DC-SWITCHGEAR BFA",7112,"CCGTD1_IPS",TT_FinMile,"61529",-,-,-,100,TK_Complete,16/05/2018,27/06/2018,16/05/2018,27/06/2018,"SI1BFA3-25 FS","SI1BFA3-25","SI1BFA4-12 FS","SI1BFA4-12",146,188,146,188,34,44,34,44,28,,"CCGT D1_Integrated Programme Schedule;OEM (Engineering & Deliverables);GAS AND STEAM TURBINE AREA;STRUCTURE FOR POWER CONTROL CENTER;LV Switchgear (no PR Scope) BFA",1,1,0.0000000414,0.0002034588,0.0002034588,0,1.0,0.0000812387,0.0068493151,0.0030769231,0.0000625,0.0005221932,0.0006435006,0.0,1.0,0.0
1.5.10.10.6,61528,"MV Switchgear BBA",7112,"CCGTD1_IPS",WBS,"61524",,,,100,Complete,02/09/2017,01/08/2017,30/04/2018,23/07/2018,,,,,109,141,143,192,25,33,33,44,,,"CCGT D1_Integrated Programme Schedule;OEM (Engineering & Deliverables);GAS AND STEAM TURBINE AREA;STRUCTURE FOR POWER CONTROL CENTER"
1.5.10.10.6-1,SI1BBA3-25,"MANUFACTURING, SHOP TEST MV-SWITCHGEAR BBA",7112,"CCGTD1_IPS",TT_Task,"61528",-,-,-,100,TK_Complete,02/09/2017,01/08/2017,23/02/2018,30/03/2018,"","","SI1BBA3-80 FS","SI1BBA3-80",109,141,134,176,25,33,31,41,11,,"CCGT D1_Integrated Programme Schedule;OEM (Engineering & Deliverables);GAS AND STEAM TURBINE AREA;STRUCTURE FOR POWER CONTROL CENTER;MV Switchgear BBA",0,1,0.0,0.0004069176,0.0,174,0.0,0.0000812387,0.0,0.0030769231,0.0,0.0010443864,0.0,0.3901345291,0.0,0.0
1.5.10.10.6-2,SI1BBA4-12,"TRANSPORT TO SITE MV-SWITCHGEAR BBA",7112,"CCGTD1_IPS",TT_Task,"61528",-,-,-,100,TK_Complete,02/04/2018,17/06/2018,30/04/2018,23/07/2018,"SI1BBA3-80 FS","SI1BBA3-80","","",139,187,143,192,32,43,33,44,24,,"CCGT D1_Integrated Programme Schedule;OEM (Engineering & Deliverables);GAS AND STEAM TURBINE AREA;STRUCTURE FOR POWER CONTROL CENTER;MV Switchgear BBA",1,0,0.0,0.0,0.0004069176,28,0.2,0.0001503957,0.0068493151,0.0,0.0,0.0,0.0012870013,0.0627802691,0.2,0.0283369572
1.5.10.10.6-3,SI1BBA3-80,"(RFS) READY FOR SHIPMENT MV-SWITCHGEAR BBA",7112,"CCGTD1_IPS",TT_FinMile,"61528",-,-,-,100,TK_Complete,01/04/2018,12/04/2018,01/04/2018,12/04/2018,"SI1BBA3-25 FS","SI1BBA3-25","SI1BBA4-12 FS","SI1BBA4-12",139,177,139,177,32,41,32,41,24,,"CCGT D1_Integrated Programme Schedule;OEM (Engineering & Deliverables);GAS AND STEAM TURBINE AREA;STRUCTURE FOR POWER CONTROL CENTER;MV Switchgear BBA",1,1,0.0000000414,0.0002034588,0.0002034588,0,1.0,0.0000812387,0.0068493151,0.0030769231,0.0000625,0.0005221932,0.0006435006,0.0,1.0,0.0
1.5.10.10.7,61527,"Cable Support System BZP",7112,"CCGTD1_IPS",WBS,"61524",,,,100,Complete,01/03/2017,21/02/2017,23/05/2017,30/04/2017,,,,,83,118,94,128,19,27,22,29,,,"CCGT D1_Integrated Programme Schedule;OEM (Engineering & Deliverables);GAS AND STEAM TURBINE AREA;STRUCTURE FOR POWER CONTROL CENTER"
1.5.10.10.7-1,SI1BZP2C30,"DETAIL DESIGN CABLE SUPPORT SYSTEM UBA/UBD",7112,"CCGTD1_IPS",TT_Task,"61527",-,-,-,100,TK_Complete,01/03/2017,21/02/2017,23/05/2017,30/04/2017,"","","","",83,118,94,128,19,27,22,29,2,,"CCGT D1_Integrated Programme Schedule;OEM (Engineering & Deliverables);GAS AND STEAM TURBINE AREA;STRUCTURE FOR POWER CONTROL CENTER;Cable Support System BZP",0,0,0.0,0.0,0.0,83,1.0,0.0000812387,0.0,0.0,0.0,0.0,0.0,0.1860986547,1.0,0.0
1.5.10.10.8,61526,"Steel Structure for 10UBA Building",7112,"CCGTD1_IPS",WBS,"61524",,,,100,Complete,25/08/2017,11/08/2017,25/08/2017,11/08/2017,,,,,108,143,108,143,25,33,25,33,,,"CCGT D1_Integrated Programme Schedule;OEM (Engineering & Deliverables);GAS AND STEAM TURBINE AREA;STRUCTURE FOR POWER CONTROL CENTER"
1.5.10.10.8-1,SI1UBA2B60,"(MS3) STEEL STRUCTURE, FINAL DIMENSIONS AND LOADS AVAILABLE 10UBA BUILDING or 10UBD",7112,"CCGTD1_IPS",TT_FinMile,"61526",-,-,-,100,TK_Complete,25/08/2017,11/08/2017,25/08/2017,11/08/2017,"","","","",108,143,108,143,25,33,25,33,10,,"CCGT D1_Integrated Programme Schedule;OEM (Engineering & Deliverables);GAS AND STEAM TURBINE AREA;STRUCTURE FOR POWER CONTROL CENTER;Steel Structure for 10UBA Building",0,0,0.0,0.0,0.0,0,1.0,0.0000812387,0.0,0.0,0.0,0.0,0.0,0.0,1.0,0.0
1.5.10.10.9,61525,"Concrete Structure for 10UBA BUILDING",7112,"CCGTD1_IPS",WBS,"61524",,,,100,Complete,14/02/2017,03/02/2017,12/12/2021,22/02/2017,,,,,80,116,332,118,18,27,77,27,,,"CCGT D1_Integrated Programme Schedule;OEM (Engineering & Deliverables);GAS AND STEAM TURBINE AREA;STRUCTURE FOR POWER CONTROL CENTER"
1.5.10.10.9-1,SI1UBA2-60,"(MS3) CONCRETE STRUCTURE FINAL DIMENSIONS LOADS AVAILABLE 10UBA BUILDING or 10UBD",7112,"CCGTD1_IPS",TT_FinMile,"61525",-,-,-,100,TK_Complete,12/12/2021,16/02/2017,12/12/2021,16/02/2017,"","","SI1UBA2-77 FF","SI1UBA2-77",332,117,332,117,77,27,77,27,99,,"CCGT D1_Integrated Programme Schedule;OEM (Engineering & Deliverables);GAS AND STEAM TURBINE AREA;STRUCTURE FOR POWER CONTROL CENTER;Concrete Structure for 10UBA BUILDING",0,1,0.0,0.0002034588,0.0,0,1.0,0.0000812387,0.0,0.0030769231,0.0,0.0005221932,0.0,0.0,1.0,0.0
1.5.10.10.9-2,SI1UBA2-77,"PREPARATION BASIC BUILDING DWGS UBA BUILDING",7112,"CCGTD1_IPS",TT_Task,"61525",-,-,-,100,TK_Complete,14/02/2017,03/02/2017,20/03/2017,22/02/2017,"SI1UBA2-60 FF","SI1UBA2-60","","",80,116,85,118,18,27,20,27,2,,"CCGT D1_Integrated Programme Schedule;OEM (Engineering & Deliverables);GAS AND STEAM TURBINE AREA;STRUCTURE FOR POWER CONTROL CENTER;Concrete Structure for 10UBA BUILDING",1,0,0.0,0.0,0.0002034588,34,1.0,0.0001503957,0.0068493151,0.0,0.0,0.0,0.0006435006,0.0762331839,1.0,0.0283369572
1.5.10.11,61521,"AUXILIARIES / ELECTRICAL SYSTEMS IN UMC",7112,"CCGTD1_IPS",WBS,"61464",,,,100,Complete,26/03/2018,18/03/2018,30/10/2018,02/01/2019,,,,,138,174,169,215,32,40,39,50,,,"CCGT D1_Integrated Programme Schedule;OEM (Engineering & Deliverables);GAS AND STEAM TURBINE AREA"
1.5.10.11.1,61523,"Compressor Air Station SCA",7112,"CCGTD1_IPS",WBS,"61521",,,,100,Complete,13/07/2018,28/09/2018,30/10/2018,02/01/2019,,,,,154,202,169,215,36,47,39,50,,,"CCGT D1_Integrated Programme Schedule;OEM (Engineering & Deliverables);GAS AND STEAM TURBINE AREA;AUXILIARIES / ELECTRICAL SYSTEMS IN UMC"
1.5.10.11.1-1,SI1SCA3-82,"(RFS) READY FOR SHIPMENT RECEIVER TANKS SCA",7112,"CCGTD1_IPS",TT_FinMile,"61523",-,-,-,100,TK_Complete,31/08/2018,28/09/2018,31/08/2018,28/09/2018,"SI1SCA3-80 FS","SI1SCA3-80","SI1SCA4-42 FS","SI1SCA4-42",161,202,161,202,37,47,37,47,36,,"CCGT D1_Integrated Programme Schedule;OEM (Engineering & Deliverables);GAS AND STEAM TURBINE AREA;AUXILIARIES / ELECTRICAL SYSTEMS IN UMC;Compressor Air Station SCA",1,1,0.0000000828,0.0004069176,0.0002034588,0,1.0,0.0000812387,0.0068493151,0.0030769231,0.000125,0.0010443864,0.0006435006,0.0,1.0,0.0
1.5.10.11.1-2,SI1SCA4-42,"TRANSPORT RECEIVER TANKS SCA",7112,"CCGTD1_IPS",TT_Task,"61523",-,-,-,100,TK_Complete,01/09/2018,24/11/2018,30/10/2018,02/01/2019,"SI1SCA3-82 FS","SI1SCA3-82","SI1SCA4-44 FS","SI1SCA4-44",161,210,169,215,37,49,39,50,36,,"CCGT D1_Integrated Programme Schedule;OEM (Engineering & Deliverables);GAS AND STEAM TURBINE AREA;AUXILIARIES / ELECTRICAL SYSTEMS IN UMC;Compressor Air Station SCA",1,1,0.0000000828,0.0002034588,0.0004069176,59,1.0,0.0001503957,0.0068493151,0.0030769231,0.000125,0.0005221932,0.0012870013,0.1322869955,1.0,0.0283369572
1.5.10.11.1-3,SI1SCA4-44,"(OTD-OS) ON SITE RECEIVER TANKS SCA",7112,"CCGTD1_IPS",TT_FinMile,"61523",-,-,-,100,TK_Complete,30/10/2018,02/01/2019,30/10/2018,02/01/2019,"SI1SCA4-42 FS","SI1SCA4-42","","",169,215,169,215,39,50,39,50,38,,"CCGT D1_Integrated Programme Schedule;OEM (Engineering & Deliverables);GAS AND STEAM TURBINE AREA;AUXILIARIES / ELECTRICAL SYSTEMS IN UMC;Compressor Air Station SCA",1,0,0.0,0.0,0.0006103764,0,1.0,0.0000812387,0.0068493151,0.0,0.0,0.0,0.0019305019,0.0,1.0,0.0
1.5.10.11.1-4,SI1SCA3-80,"(RFS) READY FOR SHIPMENT COMPRESSOR MAIN BODY SCA",7112,"CCGTD1_IPS",TT_FinMile,"61523",-,-,-,100,TK_Complete,13/07/2018,28/09/2018,13/07/2018,28/09/2018,"","","SI1SCA4-25 FS,SI1SCA3-82 FS","SI1SCA4-25,SI1SCA3-82",154,202,154,202,36,47,36,47,32,,"CCGT D1_Integrated Programme Schedule;OEM (Engineering & Deliverables);GAS AND STEAM TURBINE AREA;AUXILIARIES / ELECTRICAL SYSTEMS IN UMC;Compressor Air Station SCA",0,2,0.0,0.001017294,0.0,0,1.0,0.0000812387,0.0,0.0061538462,0.0,0.0026109661,0.0,0.0,1.0,0.0
1.5.10.11.1-5,SI1SCA4-25,"TRANSPORT COMPRESSOR MAIN BODY SCA",7112,"CCGTD1_IPS",TT_Task,"61523",-,-,-,100,TK_Complete,14/07/2018,24/11/2018,11/09/2018,02/01/2019,"SI1SCA3-80 FS","SI1SCA3-80","SI1SCA4-46 FS","SI1SCA4-46",154,210,162,215,36,49,38,50,32,,"CCGT D1_Integrated Programme Schedule;OEM (Engineering & Deliverables);GAS AND STEAM TURBINE AREA;AUXILIARIES / ELECTRICAL SYSTEMS IN UMC;Compressor Air Station SCA",1,1,0.0000000414,0.0002034588,0.0002034588,59,1.0,0.0001503957,0.0068493151,0.0030769231,0.0000625,0.0005221932,0.0006435006,0.1322869955,1.0,0.0283369572
1.5.10.11.1-6,SI1SCA4-46,"(OTD-OS) ON SITE COMPRESSOR MAIN BODY SCA",7112,"CCGTD1_IPS",TT_FinMile,"61523",-,-,-,100,TK_Complete,11/09/2018,02/01/2019,11/09/2018,02/01/2019,"SI1SCA4-25 FS","SI1SCA4-25","","",162,215,162,215,38,50,38,50,36,,"CCGT D1_Integrated Programme Schedule;OEM (Engineering & Deliverables);GAS AND STEAM TURBINE AREA;AUXILIARIES / ELECTRICAL SYSTEMS IN UMC;Compressor Air Station SCA",1,0,0.0,0.0,0.0004069176,0,1.0,0.0000812387,0.0068493151,0.0,0.0,0.0,0.0012870013,0.0,1.0,0.0
1.5.10.11.2,61522,"SEE / SFC Cubicle (GT)",7112,"CCGTD1_IPS",WBS,"61521",,,,100,Complete,26/03/2018,18/03/2018,08/05/2018,13/05/2018,,,,,138,174,144,182,32,40,33,42,,,"CCGT D1_Integrated Programme Schedule;OEM (Engineering & Deliverables);GAS AND STEAM TURBINE AREA;AUXILIARIES / ELECTRICAL SYSTEMS IN UMC"
1.5.10.11.2-1,SI1CJT4-27,"TRANSPORT TO SITE SFC/SEE CUBICLE CJT",7112,"CCGTD1_IPS",TT_Task,"61522",-,-,-,100,TK_Complete,26/03/2018,18/03/2018,08/05/2018,13/05/2018,"","","","",138,174,144,182,32,40,33,42,23,,"CCGT D1_Integrated Programme Schedule;OEM (Engineering & Deliverables);GAS AND STEAM TURBINE AREA;AUXILIARIES / ELECTRICAL SYSTEMS IN UMC;SEE / SFC Cubicle (GT)",0,0,0.0,0.0,0.0,43,0.0,0.0000812387,0.0,0.0,0.0,0.0,0.0,0.0964125561,0.0,0.0
1.5.10.12,61511,"WATER & STEAM SYSTEM IN UMC",7112,"CCGTD1_IPS",WBS,"61464",,,,100,Complete,26/11/2016,10/11/2016,14/06/2018,25/06/2018,,,,,69,103,150,188,16,24,35,43,,,"CCGT D1_Integrated Programme Schedule;OEM (Engineering & Deliverables);GAS AND STEAM TURBINE AREA"
1.5.10.12.1,61520,"Service / Closed Cooling Water PxB Module PXB00Y",7112,"CCGTD1_IPS",WBS,"61511",,,,100,Complete,13/06/2017,13/05/2017,30/05/2018,25/06/2018,,,,,97,130,148,188,22,30,34,43,,,"CCGT D1_Integrated Programme Schedule;OEM (Engineering & Deliverables);GAS AND STEAM TURBINE AREA;WATER & STEAM SYSTEM IN UMC"
1.5.10.12.1-1,SI1PXB2N60,"(MS3) PXB00Y MODULE FINAL DIMENSIONS AND LOADS AVAILABLE",7112,"CCGTD1_IPS",TT_FinMile,"61520",-,-,-,100,TK_Complete,14/07/2017,19/06/2017,14/07/2017,19/06/2017,"SI1PGB2B60 FS,SI1PDB2A60 FS,SI1PGB2D60 FS,SI1PGB2C60 FS,SI1PCB2B60 FS","SI1PGB2B60,SI1PDB2A60,SI1PGB2D60,SI1PGB2C60,SI1PCB2B60","SI1PXB2-10 FS","SI1PXB2-10",102,135,102,135,23,31,23,31,9,,"CCGT D1_Integrated Programme Schedule;OEM (Engineering & Deliverables);GAS AND STEAM TURBINE AREA;WATER & STEAM SYSTEM IN UMC;Service / Closed Cooling Water PxB Module PXB00Y",5,1,0.0000012421,0.0012207528,0.0046795524,0,1.0,0.0000812387,0.0342465753,0.0030769231,0.001875,0.0031331593,0.0148005148,0.0,1.0,0.0
1.5.10.12.1-2,SI1PXB2-10,"DETAIL DESIGN PXB00Y MODULE",7112,"CCGTD1_IPS",TT_Task,"61520",-,-,-,100,TK_Complete,13/06/2017,13/05/2017,21/11/2017,09/10/2017,"SI1PXB2N60 FS,SI1PGB2B65 FS,SI1PCB2B65 FS,SI1PGB2C65 FS,SI1PDB2-60 FS,SI1PGB2D65 FS,SI1PDB2-65 FS","SI1PXB2N60,SI1PGB2B65,SI1PCB2B65,SI1PGB2C65,SI1PDB2-60,SI1PGB2D65,SI1PDB2-65","SI1PXB3-25 FS,SI1PXB3-10 FS,SI1BZP2K30 SS","SI1PXB3-25,SI1PXB3-10,SI1BZP2K30",97,130,120,151,22,30,28,35,7,,"CCGT D1_Integrated Programme Schedule;OEM (Engineering & Deliverables);GAS AND STEAM TURBINE AREA;WATER & STEAM SYSTEM IN UMC;Service / Closed Cooling Water PxB Module PXB00Y",7,3,0.0000062106,0.001017294,0.006103764,161,1.0,0.0005653378,0.0479452055,0.0092307692,0.009375,0.0026109661,0.0193050193,0.3609865471,1.0,0.1983587003
1.5.10.12.1-3,SI1PXB3-25,"MANUFACTURING PXB00Y MODULE",7112,"CCGTD1_IPS",TT_Task,"61520",-,-,-,100,TK_Complete,26/01/2018,14/01/2018,08/04/2018,31/05/2018,"SI1PXB2-10 FS,SI1PXB3-20 FF,SI1PXB3-10 FS","SI1PXB2-10,SI1PXB3-20,SI1PXB3-10","SI1UMC3H25# SS,SI1UMC3H25# FF,SI1PXB4-25 FS","SI1UMC3H25#,SI1UMC3H25#,SI1PXB4-25",130,165,140,184,30,38,32,43,18,,"CCGT D1_Integrated Programme Schedule;OEM (Engineering & Deliverables);GAS AND STEAM TURBINE AREA;WATER & STEAM SYSTEM IN UMC;Service / Closed Cooling Water PxB Module PXB00Y",3,1,0.0000042232,0.0004069176,0.0103763988,72,0.0,0.0005587305,0.0205479452,0.0030769231,0.006375,0.0010443864,0.0328185328,0.1614349776,0.0,0.1956513643
1.5.10.12.1-4,SI1PXB4-25,"TRANSPORT PXB00Y MODULE",7112,"CCGTD1_IPS",TT_Task,"61520",-,-,-,100,TK_Complete,15/05/2018,18/06/2018,30/05/2018,25/06/2018,"SI1PXB3-25 FS","SI1PXB3-25","SI1PXB4-42 FS","SI1PXB4-42",145,187,148,188,34,43,34,43,28,,"CCGT D1_Integrated Programme Schedule;OEM (Engineering & Deliverables);GAS AND STEAM TURBINE AREA;WATER & STEAM SYSTEM IN UMC;Service / Closed Cooling Water PxB Module PXB00Y",1,1,0.000002153,0.0002034588,0.0105798576,15,1.0,0.0005571324,0.0068493151,0.0030769231,0.00325,0.0005221932,0.0334620335,0.033632287,1.0,0.1949965451
1.5.10.12.1-5,SI1PXB3-10,"DELIVERY OF SKID FRAME STEEL, PIPING MATERIAL PXB00Y MODULE",7112,"CCGTD1_IPS",TT_Task,"61520",-,-,-,100,TK_Complete,09/11/2017,10/10/2017,12/02/2018,13/01/2018,"SI1PXB2-10 FS,SI---P2J85 FS","SI1PXB2-10,SI---P2J85","SI1PXB3-25 FS","SI1PXB3-25",119,151,132,165,27,35,30,38,14,,"CCGT D1_Integrated Programme Schedule;OEM (Engineering & Deliverables);GAS AND STEAM TURBINE AREA;WATER & STEAM SYSTEM IN UMC;Service / Closed Cooling Water PxB Module PXB00Y",2,1,0.0000003726,0.0006103764,0.0069175992,95,1.0,0.0002962631,0.0136986301,0.0030769231,0.0005625,0.0015665796,0.0218790219,0.2130044843,1.0,0.0881058254
1.5.10.12.1-6,SI1PXB3-20,"DELIVERY OF COMPONENTS PXB00Y MODULE",7112,"CCGTD1_IPS",TT_FinMile,"61520",-,-,-,100,TK_Complete,18/03/2018,15/02/2018,18/03/2018,15/02/2018,"SI1PDB4-27 FS,SI1PGB4D27 FS,SI1PGB4C27 FS,SI1PCB4B27 FS,SI1PGB4B27 FS","SI1PDB4-27,SI1PGB4D27,SI1PGB4C27,SI1PCB4B27,SI1PGB4B27","SI1PXB3-25 FF","SI1PXB3-25",137,169,137,169,32,39,32,39,22,,"CCGT D1_Integrated Programme Schedule;OEM (Engineering & Deliverables);GAS AND STEAM TURBINE AREA;WATER & STEAM SYSTEM IN UMC;Service / Closed Cooling Water PxB Module PXB00Y",5,1,0.0000018632,0.0006103764,0.0067141404,0,1.0,0.0000812387,0.0342465753,0.0030769231,0.0028125,0.0015665796,0.0212355212,0.0,1.0,0.0
1.5.10.12.1-7,SI1PXB4-42,"(OTD-OS) ON SITE PXB00Y MODULE",7112,"CCGTD1_IPS",TT_FinMile,"61520",-,-,-,100,TK_Complete,30/05/2018,25/06/2018,30/05/2018,25/06/2018,"SI1PXB4-25 FS","SI1PXB4-25","","",148,188,148,188,34,43,34,43,29,,"CCGT D1_Integrated Programme Schedule;OEM (Engineering & Deliverables);GAS AND STEAM TURBINE AREA;WATER & STEAM SYSTEM IN UMC;Service / Closed Cooling Water PxB Module PXB00Y",1,0,0.0,0.0,0.0107833164,0,1.0,0.0000812387,0.0068493151,0.0,0.0,0.0,0.0341055341,0.0,1.0,0.0
1.5.10.12.2,61519,"CCW Expansion Tank PGB",7112,"CCGTD1_IPS",WBS,"61511",,,,100,Complete,01/02/2017,23/01/2017,15/03/2018,20/03/2018,,,,,79,114,137,174,18,26,32,40,,,"CCGT D1_Integrated Programme Schedule;OEM (Engineering & Deliverables);GAS AND STEAM TURBINE AREA;WATER & STEAM SYSTEM IN UMC"
1.5.10.12.2-1,SI1PGB2D60,"(DF) FINAL INPUT FOR MS3 EXPANSION TANK PGB",7112,"CCGTD1_IPS",TT_FinMile,"61519",-,-,-,100,TK_Complete,25/08/2017,29/07/2017,25/08/2017,29/07/2017,"SI1PGB2D85 FS,SI----2C00 FS","SI1PGB2D85,SI----2C00","SI1PXB2N60 FS","SI1PXB2N60",108,141,108,141,25,32,25,32,10,,"CCGT D1_Integrated Programme Schedule;OEM (Engineering & Deliverables);GAS AND STEAM TURBINE AREA;WATER & STEAM SYSTEM IN UMC;CCW Expansion Tank PGB",2,1,0.0000001408,0.0014242116,0.001017294,0,1.0,0.0000812387,0.0136986301,0.0030769231,0.0002125,0.0036553525,0.0032175032,0.0,1.0,0.0
1.5.10.12.2-2,SI1PGB2D85,"ORDER PLACED EXPANSION TANK PGB",7112,"CCGTD1_IPS",TT_Mile,"61519",-,-,-,100,TK_Complete,26/07/2017,12/07/2017,26/07/2017,12/07/2017,"SI1PGB2D80 FS","SI1PGB2D80","SI1PGB2D60 FS,SI1PGB3D25 FS,SI1PGB2D65 FS","SI1PGB2D60,SI1PGB3D25,SI1PGB2D65",104,138,104,138,24,32,24,32,9,,"CCGT D1_Integrated Programme Schedule;OEM (Engineering & Deliverables);GAS AND STEAM TURBINE AREA;WATER & STEAM SYSTEM IN UMC;CCW Expansion Tank PGB",1,3,0.0000015175,0.0026449644,0.0008138352,0,1.0,0.0000812387,0.0068493151,0.0092307692,0.002290625,0.0067885117,0.0025740026,0.0,1.0,0.0
1.5.10.12.2-3,SI1PGB3D25,"FABRICATION DESIGN, PROCUREMENT, PRE-FABRICATION EXPANSION TANK PGB",7112,"CCGTD1_IPS",TT_Task,"61519",-,-,-,100,TK_Complete,26/07/2017,12/07/2017,23/01/2018,15/12/2017,"SI1PGB2D85 FS","SI1PGB2D85","SI1PGB3D80 FS","SI1PGB3D80",104,138,129,161,24,32,30,37,9,,"CCGT D1_Integrated Programme Schedule;OEM (Engineering & Deliverables);GAS AND STEAM TURBINE AREA;WATER & STEAM SYSTEM IN UMC;CCW Expansion Tank PGB",1,1,0.0000005569,0.0012207528,0.001017294,181,1.0,0.0001503957,0.0068493151,0.0030769231,0.000840625,0.0031331593,0.0032175032,0.4058295964,1.0,0.0283369572
1.5.10.12.2-4,SI1PGB4D27,"TRANSPORT EXPANSION TANK PGB",7112,"CCGTD1_IPS",TT_Task,"61519",-,-,-,100,TK_Complete,26/01/2018,08/02/2018,15/03/2018,20/03/2018,"SI1PGB3D80 FS","SI1PGB3D80","SI1PXB3-20 FS","SI1PXB3-20",130,168,137,174,30,39,32,40,18,,"CCGT D1_Integrated Programme Schedule;OEM (Engineering & Deliverables);GAS AND STEAM TURBINE AREA;WATER & STEAM SYSTEM IN UMC;CCW Expansion Tank PGB",1,1,0.0000004741,0.0008138352,0.0014242116,48,1.0,0.0001503957,0.0068493151,0.0030769231,0.000715625,0.0020887728,0.0045045045,0.1076233184,1.0,0.0283369572
1.5.10.12.2-5,SI1PGB3D80,"(RFS) READY FOR SHIPMENT EXPANSION TANK PGB",7112,"CCGTD1_IPS",TT_FinMile,"61519",-,-,-,100,TK_Complete,26/01/2018,04/12/2017,26/01/2018,04/12/2017,"SI1PGB3D25 FS","SI1PGB3D25","SI1PGB4D27 FS","SI1PGB4D27",130,159,130,159,30,37,30,37,18,,"CCGT D1_Integrated Programme Schedule;OEM (Engineering & Deliverables);GAS AND STEAM TURBINE AREA;WATER & STEAM SYSTEM IN UMC;CCW Expansion Tank PGB",1,1,0.0000005569,0.001017294,0.0012207528,0,1.0,0.0000812387,0.0068493151,0.0030769231,0.000840625,0.0026109661,0.0038610039,0.0,1.0,0.0
1.5.10.12.2-6,SI1PGB2D65,"(DF) FINAL INPUT FOR M2 EXPANSION TANK PGB",7112,"CCGTD1_IPS",TT_FinMile,"61519",-,-,-,100,TK_Complete,25/08/2017,08/08/2017,25/08/2017,08/08/2017,"SI1PGB2D85 FS","SI1PGB2D85","SI1PXB2-10 FS","SI1PXB2-10",108,142,108,142,25,33,25,33,10,,"CCGT D1_Integrated Programme Schedule;OEM (Engineering & Deliverables);GAS AND STEAM TURBINE AREA;WATER & STEAM SYSTEM IN UMC;CCW Expansion Tank PGB",1,1,0.0000007867,0.0012207528,0.001017294,0,1.0,0.0000812387,0.0068493151,0.0030769231,0.0011875,0.0031331593,0.0032175032,0.0,1.0,0.0
1.5.10.12.2-7,SI1PGB2D75,"PREPARATION RFQ EXPANSION TANK PGB",7112,"CCGTD1_IPS",TT_Task,"61519",-,-,-,100,TK_Complete,01/02/2017,23/01/2017,28/02/2017,15/03/2017,"SI----2C00 FS","SI----2C00","SI1PGB2D80 FS","SI1PGB2D80",79,114,82,121,18,26,19,28,2,,"CCGT D1_Integrated Programme Schedule;OEM (Engineering & Deliverables);GAS AND STEAM TURBINE AREA;WATER & STEAM SYSTEM IN UMC;CCW Expansion Tank PGB",1,1,0.0000002588,0.003051882,0.0002034588,27,0.0,0.0000837826,0.0068493151,0.0030769231,0.000390625,0.0078328982,0.0006435006,0.0605381166,0.0,0.0010423676
1.5.10.12.2-8,SI1PGB2D80,"QUOTATION STAGE EXPANSION TANK PGB",7112,"CCGTD1_IPS",TT_Task,"61519",-,-,-,100,TK_Complete,01/04/2017,16/03/2017,26/04/2017,11/07/2017,"SI1PGB2D75 FS,SI-3062-17 FS","SI1PGB2D75,SI-3062-17","SI1PGB2D85 FS","SI1PGB2D85",87,121,91,138,20,28,21,32,4,,"CCGT D1_Integrated Programme Schedule;OEM (Engineering & Deliverables);GAS AND STEAM TURBINE AREA;WATER & STEAM SYSTEM IN UMC;CCW Expansion Tank PGB",2,1,0.0000011034,0.0028484232,0.0006103764,25,0.0,0.0001561474,0.0136986301,0.0030769231,0.001665625,0.007310705,0.0019305019,0.0560538117,0.0,0.0306937062
1.5.10.12.3,61518,"CCW Heat Exchangers PGB",7112,"CCGTD1_IPS",WBS,"61511",,,,100,Complete,01/02/2017,19/01/2017,15/03/2018,13/03/2018,,,,,79,113,137,173,18,26,32,40,,,"CCGT D1_Integrated Programme Schedule;OEM (Engineering & Deliverables);GAS AND STEAM TURBINE AREA;WATER & STEAM SYSTEM IN UMC"
1.5.10.12.3-1,SI1PGB3C25,"FABRICATION DESIGN, PROCUREMENT, PRE-FABRICATION HEAT EXCHANGER PGB",7112,"CCGTD1_IPS",TT_Task,"61518",-,-,-,100,TK_Complete,02/06/2017,18/05/2017,18/12/2017,15/12/2017,"SI1PGB2C85 FS","SI1PGB2C85","SI1PGB3C80 FS","SI1PGB3C80",96,130,124,161,22,30,29,37,6,,"CCGT D1_Integrated Programme Schedule;OEM (Engineering & Deliverables);GAS AND STEAM TURBINE AREA;WATER & STEAM SYSTEM IN UMC;CCW Heat Exchangers PGB",1,1,0.0000005569,0.0012207528,0.001017294,199,0.0,0.0001503957,0.0068493151,0.0030769231,0.000840625,0.0031331593,0.0032175032,0.4461883408,0.0,0.0283369572
1.5.10.12.3-2,SI1PGB4C27,"TRANSPORT HEAT EXCHANGER PGB",7112,"CCGTD1_IPS",TT_Task,"61518",-,-,-,100,TK_Complete,26/01/2018,31/01/2018,15/03/2018,13/03/2018,"SI1PGB3C80 FS","SI1PGB3C80","SI1PXB3-20 FS","SI1PXB3-20",130,167,137,173,30,39,32,40,18,,"CCGT D1_Integrated Programme Schedule;OEM (Engineering & Deliverables);GAS AND STEAM TURBINE AREA;WATER & STEAM SYSTEM IN UMC;CCW Heat Exchangers PGB",1,1,0.0000004741,0.0008138352,0.0014242116,48,1.0,0.0001503957,0.0068493151,0.0030769231,0.000715625,0.0020887728,0.0045045045,0.1076233184,1.0,0.0283369572
1.5.10.12.3-3,SI1PGB2C75,"PREPARATION RFQ HEAT EXCHANGER PGB",7112,"CCGTD1_IPS",TT_Task,"61518",-,-,-,100,TK_Complete,01/02/2017,19/01/2017,28/02/2017,15/03/2017,"SI----2C00 FS","SI----2C00","SI1PGB2C80 FS","SI1PGB2C80",79,113,82,121,18,26,19,28,2,,"CCGT D1_Integrated Programme Schedule;OEM (Engineering & Deliverables);GAS AND STEAM TURBINE AREA;WATER & STEAM SYSTEM IN UMC;CCW Heat Exchangers PGB",1,1,0.0000002588,0.003051882,0.0002034588,27,0.0,0.0000837826,0.0068493151,0.0030769231,0.000390625,0.0078328982,0.0006435006,0.0605381166,0.0,0.0010423676
1.5.10.12.3-4,SI1PGB2C80,"QUOTATION STAGE HEAT EXCHANGER PGB",7112,"CCGTD1_IPS",TT_Task,"61518",-,-,-,100,TK_Complete,01/04/2017,16/03/2017,26/04/2017,16/05/2017,"SI1PGB2C75 FS,SI-3062-17 FS","SI1PGB2C75,SI-3062-17","SI1PGB2C85 FS","SI1PGB2C85",87,121,91,130,20,28,21,30,4,,"CCGT D1_Integrated Programme Schedule;OEM (Engineering & Deliverables);GAS AND STEAM TURBINE AREA;WATER & STEAM SYSTEM IN UMC;CCW Heat Exchangers PGB",2,1,0.0000011034,0.0028484232,0.0006103764,25,0.0,0.0001561474,0.0136986301,0.0030769231,0.001665625,0.007310705,0.0019305019,0.0560538117,0.0,0.0306937062
1.5.10.12.3-5,SI1PGB2C85,"ORDER PLACED HEAT EXCHANGER PGB",7112,"CCGTD1_IPS",TT_Mile,"61518",-,-,-,100,TK_Complete,02/06/2017,17/05/2017,02/06/2017,17/05/2017,"SI1PGB2C80 FS","SI1PGB2C80","SI1PGB2C65 FS,SI1PGB3C25 FS,SI1PGB2C60 FS","SI1PGB2C65,SI1PGB3C25,SI1PGB2C60",96,130,96,130,22,30,22,30,6,,"CCGT D1_Integrated Programme Schedule;OEM (Engineering & Deliverables);GAS AND STEAM TURBINE AREA;WATER & STEAM SYSTEM IN UMC;CCW Heat Exchangers PGB",1,3,0.0000015175,0.0026449644,0.0008138352,0,1.0,0.0000812387,0.0068493151,0.0092307692,0.002290625,0.0067885117,0.0025740026,0.0,1.0,0.0
1.5.10.12.3-6,SI1PGB2C60,"(DF) FINAL INPUT FOR MS3 HEAT EXCHANGER PGB",7112,"CCGTD1_IPS",TT_FinMile,"61518",-,-,-,100,TK_Complete,03/06/2017,31/05/2017,03/06/2017,31/05/2017,"SI1PGB2C85 FS,SI----2C00 FS","SI1PGB2C85,SI----2C00","SI1PXB2N60 FS","SI1PXB2N60",96,132,96,132,22,30,22,30,6,,"CCGT D1_Integrated Programme Schedule;OEM (Engineering & Deliverables);GAS AND STEAM TURBINE AREA;WATER & STEAM SYSTEM IN UMC;CCW Heat Exchangers PGB",2,1,0.0000001408,0.0014242116,0.001017294,0,1.0,0.0000812387,0.0136986301,0.0030769231,0.0002125,0.0036553525,0.0032175032,0.0,1.0,0.0
1.5.10.12.3-7,SI1PGB3C80,"(RFS) READY FOR SHIPMENT HEAT EXCHANGER PGB",7112,"CCGTD1_IPS",TT_FinMile,"61518",-,-,-,100,TK_Complete,15/12/2017,15/12/2017,15/12/2017,15/12/2017,"SI1PGB3C25 FS","SI1PGB3C25","SI1PGB4C27 FS","SI1PGB4C27",124,161,124,161,29,37,29,37,16,,"CCGT D1_Integrated Programme Schedule;OEM (Engineering & Deliverables);GAS AND STEAM TURBINE AREA;WATER & STEAM SYSTEM IN UMC;CCW Heat Exchangers PGB",1,1,0.0000005569,0.001017294,0.0012207528,0,1.0,0.0000812387,0.0068493151,0.0030769231,0.000840625,0.0026109661,0.0038610039,0.0,1.0,0.0
1.5.10.12.3-8,SI1PGB2C65,"(DF) FINAL INPUT FOR M2 HEAT EXCHANGER PGB",7112,"CCGTD1_IPS",TT_FinMile,"61518",-,-,-,100,TK_Complete,25/06/2017,13/06/2017,25/06/2017,13/06/2017,"SI1PGB2C85 FS","SI1PGB2C85","SI1PXB2-10 FS","SI1PXB2-10",99,134,99,134,23,31,23,31,8,,"CCGT D1_Integrated Programme Schedule;OEM (Engineering & Deliverables);GAS AND STEAM TURBINE AREA;WATER & STEAM SYSTEM IN UMC;CCW Heat Exchangers PGB",1,1,0.0000007867,0.0012207528,0.001017294,0,1.0,0.0000812387,0.0068493151,0.0030769231,0.0011875,0.0031331593,0.0032175032,0.0,1.0,0.0
1.5.10.12.4,61517,"CCW Pumps PGB",7112,"CCGTD1_IPS",WBS,"61511",,,,100,Complete,26/11/2016,24/11/2016,15/03/2018,13/03/2018,,,,,69,105,137,173,16,24,32,40,,,"CCGT D1_Integrated Programme Schedule;OEM (Engineering & Deliverables);GAS AND STEAM TURBINE AREA;WATER & STEAM SYSTEM IN UMC"
1.5.10.12.4-1,SI1PGB2B75,"CONTRACT REVIEW, PREPARATION RFQ CCW PUMP PGB",7112,"CCGTD1_IPS",TT_Task,"61517",-,-,-,100,TK_Complete,26/11/2016,24/11/2016,30/12/2016,28/12/2016,"SI----2C00 FS","SI----2C00","SI1PGB2B80 FS,SI1PCB2B80 FS","SI1PGB2B80,SI1PCB2B80",69,105,74,110,16,24,17,25,1,,"CCGT D1_Integrated Programme Schedule;OEM (Engineering & Deliverables);GAS AND STEAM TURBINE AREA;WATER & STEAM SYSTEM IN UMC;CCW Pumps PGB",1,2,0.0000003882,0.0048830112,0.0002034588,34,1.0,0.0000844422,0.0068493151,0.0061538462,0.0005859375,0.0125326371,0.0006435006,0.0762331839,1.0,0.0013126111
1.5.10.12.4-2,SI1PGB2B80,"QUOTATION STAGE CCW PUMP PGB",7112,"CCGTD1_IPS",TT_Task,"61517",-,-,-,100,TK_Complete,02/02/2017,29/12/2016,05/04/2017,02/03/2017,"SI1PGB2B75 FS,SI-3062-17 FS","SI1PGB2B75,SI-3062-17","SI1PGB2B85 FS","SI1PGB2B85",79,110,88,119,18,25,20,27,2,,"CCGT D1_Integrated Programme Schedule;OEM (Engineering & Deliverables);GAS AND STEAM TURBINE AREA;WATER & STEAM SYSTEM IN UMC;CCW Pumps PGB",2,1,0.0000009378,0.0028484232,0.0006103764,62,1.0,0.0001365588,0.0136986301,0.0030769231,0.001415625,0.007310705,0.0019305019,0.1390134529,1.0,0.022667318
1.5.10.12.4-3,SI1PGB2B85,"ORDER PLACED CCW PUMP PGB",7112,"CCGTD1_IPS",TT_Mile,"61517",-,-,-,100,TK_Complete,17/03/2017,03/03/2017,17/03/2017,03/03/2017,"SI1PGB2B80 FS","SI1PGB2B80","SI1PGB3B25 FS,SI1PGB2B65 FS,SI1PGB2B60 FS","SI1PGB3B25,SI1PGB2B65,SI1PGB2B60",85,120,85,120,19,28,19,28,3,,"CCGT D1_Integrated Programme Schedule;OEM (Engineering & Deliverables);GAS AND STEAM TURBINE AREA;WATER & STEAM SYSTEM IN UMC;CCW Pumps PGB",1,3,0.0000013518,0.0026449644,0.0008138352,0,1.0,0.0000812387,0.0068493151,0.0092307692,0.002040625,0.0067885117,0.0025740026,0.0,1.0,0.0
1.5.10.12.4-4,SI1PGB3B25,"DETAIL DESIGN, MANUFACTURING, SHOP TEST CCW PUMP PGB",7112,"CCGTD1_IPS",TT_Task,"61517",-,-,-,100,TK_Complete,17/03/2017,04/03/2017,12/12/2017,06/12/2017,"SI1PGB2B85 FS","SI1PGB2B85","SI1PGB3B80 FS","SI1PGB3B80",85,120,123,159,19,28,28,37,3,,"CCGT D1_Integrated Programme Schedule;OEM (Engineering & Deliverables);GAS AND STEAM TURBINE AREA;WATER & STEAM SYSTEM IN UMC;CCW Pumps PGB",1,1,0.0000005362,0.0012207528,0.001017294,270,0.4,0.0001503957,0.0068493151,0.0030769231,0.000809375,0.0031331593,0.0032175032,0.6053811659,0.4,0.0283369572
1.5.10.12.4-5,SI1PGB4B27,"TRANSPORT CCW PUMP PGB",7112,"CCGTD1_IPS",TT_Task,"61517",-,-,-,100,TK_Complete,26/01/2018,31/01/2018,15/03/2018,13/03/2018,"SI1PGB3B80 FS","SI1PGB3B80","SI1PXB3-20 FS","SI1PXB3-20",130,167,137,173,30,39,32,40,17,,"CCGT D1_Integrated Programme Schedule;OEM (Engineering & Deliverables);GAS AND STEAM TURBINE AREA;WATER & STEAM SYSTEM IN UMC;CCW Pumps PGB",1,1,0.0000004534,0.0008138352,0.0014242116,48,1.0,0.0001503957,0.0068493151,0.0030769231,0.000684375,0.0020887728,0.0045045045,0.1076233184,1.0,0.0283369572
1.5.10.12.4-6,SI1PGB2B60,"(DF) FINAL INPUT FOR MS3 CCW PUMP PGB",7112,"CCGTD1_IPS",TT_FinMile,"61517",-,-,-,100,TK_Complete,31/03/2017,27/03/2017,31/03/2017,27/03/2017,"SI----2C00 FS,SI1PGB2B85 FS","SI----2C00,SI1PGB2B85","SI1PXB2N60 FS","SI1PXB2N60",87,123,87,123,20,28,20,28,3,,"CCGT D1_Integrated Programme Schedule;OEM (Engineering & Deliverables);GAS AND STEAM TURBINE AREA;WATER & STEAM SYSTEM IN UMC;CCW Pumps PGB",2,1,0.0000001201,0.0014242116,0.001017294,0,1.0,0.0000812387,0.0136986301,0.0030769231,0.00018125,0.0036553525,0.0032175032,0.0,1.0,0.0
1.5.10.12.4-7,SI1PGB2B65,"(DF) FINAL INPUT FOR M2 CCW PUMP PGB",7112,"CCGTD1_IPS",TT_FinMile,"61517",-,-,-,100,TK_Complete,31/03/2017,27/03/2017,31/03/2017,27/03/2017,"SI1PGB2B85 FS","SI1PGB2B85","SI1PXB2-10 FS","SI1PXB2-10",87,123,87,123,20,28,20,28,3,,"CCGT D1_Integrated Programme Schedule;OEM (Engineering & Deliverables);GAS AND STEAM TURBINE AREA;WATER & STEAM SYSTEM IN UMC;CCW Pumps PGB",1,1,0.0000006625,0.0012207528,0.001017294,0,1.0,0.0000812387,0.0068493151,0.0030769231,0.001,0.0031331593,0.0032175032,0.0,1.0,0.0
1.5.10.12.4-8,SI1PGB3B80,"(RFS) READY FOR SHIPMENT CCW PUMP PGB",7112,"CCGTD1_IPS",TT_FinMile,"61517",-,-,-,100,TK_Complete,26/01/2018,15/12/2017,26/01/2018,15/12/2017,"SI1PGB3B25 FS","SI1PGB3B25","SI1PGB4B27 FS","SI1PGB4B27",130,161,130,161,30,37,30,37,17,,"CCGT D1_Integrated Programme Schedule;OEM (Engineering & Deliverables);GAS AND STEAM TURBINE AREA;WATER & STEAM SYSTEM IN UMC;CCW Pumps PGB",1,1,0.0000005362,0.001017294,0.0012207528,0,1.0,0.0000812387,0.0068493151,0.0030769231,0.000809375,0.0026109661,0.0038610039,0.0,1.0,0.0
1.5.10.12.5,61516,"Debris Filter for Service Cooling System: Strainer/Skid PDB",7112,"CCGTD1_IPS",WBS,"61511",,,,100,Complete,10/12/2016,09/12/2016,28/03/2018,20/03/2018,,,,,71,108,139,174,16,25,32,40,,,"CCGT D1_Integrated Programme Schedule;OEM (Engineering & Deliverables);GAS AND STEAM TURBINE AREA;WATER & STEAM SYSTEM IN UMC"
1.5.10.12.5-1,SI1PDB2A60,"(DF) FINAL INPUT FOR MS3 STEEL DEBRIS FILTER PDB",7112,"CCGTD1_IPS",TT_FinMile,"61516",-,-,-,100,TK_Complete,31/05/2017,19/05/2017,31/05/2017,19/05/2017,"SI1PDB2-85 FS,SI----2C00 FS","SI1PDB2-85,SI----2C00","SI1PXB2N60 FS","SI1PXB2N60",96,131,96,131,22,30,22,30,6,,"CCGT D1_Integrated Programme Schedule;OEM (Engineering & Deliverables);GAS AND STEAM TURBINE AREA;WATER & STEAM SYSTEM IN UMC;Debris Filter for Service Cooling System: Strainer/Skid PDB",2,1,0.0000001822,0.0014242116,0.0012207528,0,1.0,0.0000812387,0.0136986301,0.0030769231,0.000275,0.0036553525,0.0038610039,0.0,1.0,0.0
1.5.10.12.5-2,SI1PDB2-75,"PREPARATION RFQ DEBRIS FILTER PDB",7112,"CCGTD1_IPS",TT_Task,"61516",-,-,-,100,TK_Complete,10/12/2016,09/12/2016,30/12/2016,29/12/2016,"SI-P--2-05 FF","SI-P--2-05","SI1PDB2-80 FS","SI1PDB2-80",71,108,74,110,16,25,17,25,1,,"CCGT D1_Integrated Programme Schedule;OEM (Engineering & Deliverables);GAS AND STEAM TURBINE AREA;WATER & STEAM SYSTEM IN UMC;Debris Filter for Service Cooling System: Strainer/Skid PDB",1,1,0.0000006625,0.0032553408,0.0002034588,20,1.0,0.0000969562,0.0068493151,0.0030769231,0.001,0.0083550914,0.0006435006,0.0448430493,1.0,0.0064402175
1.5.10.12.5-3,SI1PDB2-80,"QUOTATION STAGE DEBRIS FILTER PDB",7112,"CCGTD1_IPS",TT_Task,"61516",-,-,-,100,TK_Complete,03/02/2017,30/12/2016,09/03/2017,21/04/2017,"SI-3062-17 FS,SI1PDB2-75 FS","SI-3062-17,SI1PDB2-75","SI1PDB2-85 FS","SI1PDB2-85",79,111,84,127,18,25,19,29,2,,"CCGT D1_Integrated Programme Schedule;OEM (Engineering & Deliverables);GAS AND STEAM TURBINE AREA;WATER & STEAM SYSTEM IN UMC;Debris Filter for Service Cooling System: Strainer/Skid PDB",2,1,0.0000016313,0.003051882,0.0006103764,34,0.0,0.0001686486,0.0136986301,0.0030769231,0.0024625,0.0078328982,0.0019305019,0.0762331839,0.0,0.035816053
1.5.10.12.5-4,SI1PDB2-85,"ORDER PLACED DEBRIS FILTER PDB",7112,"CCGTD1_IPS",TT_Mile,"61516",-,-,-,100,TK_Complete,15/05/2017,22/04/2017,15/05/2017,22/04/2017,"SI1PDB2-80 FS","SI1PDB2-80","SI1PDB3-25 FS,SI1PDB2A60 FS,SI1PDB2-65 FS,SI1PDB2-60 FS","SI1PDB3-25,SI1PDB2A60,SI1PDB2-65,SI1PDB2-60",93,127,93,127,21,29,21,29,5,,"CCGT D1_Integrated Programme Schedule;OEM (Engineering & Deliverables);GAS AND STEAM TURBINE AREA;WATER & STEAM SYSTEM IN UMC;Debris Filter for Service Cooling System: Strainer/Skid PDB",1,4,0.0000020868,0.0028484232,0.0008138352,0,1.0,0.0000812387,0.0068493151,0.0123076923,0.00315,0.007310705,0.0025740026,0.0,1.0,0.0
1.5.10.12.5-5,SI1PDB3-25,"DETAIL DESIGN, MANUFACTURING DEBRIS FILTER PDB",7112,"CCGTD1_IPS",TT_Task,"61516",-,-,-,100,TK_Complete,15/05/2017,23/04/2017,04/02/2018,04/01/2018,"SI1PDB2-85 FS","SI1PDB2-85","SI1PDB3-80 FS","SI1PDB3-80",93,127,131,163,21,29,30,38,5,,"CCGT D1_Integrated Programme Schedule;OEM (Engineering & Deliverables);GAS AND STEAM TURBINE AREA;WATER & STEAM SYSTEM IN UMC;Debris Filter for Service Cooling System: Strainer/Skid PDB",1,1,0.0000005879,0.0012207528,0.001017294,265,1.0,0.0001503957,0.0068493151,0.0030769231,0.0008875,0.0031331593,0.0032175032,0.5941704036,1.0,0.0283369572
1.5.10.12.5-6,SI1PDB4-27,"TRANSPORT DEBRIS FILTER PDB",7112,"CCGTD1_IPS",TT_Task,"61516",-,-,-,100,TK_Complete,15/02/2018,08/02/2018,28/03/2018,20/03/2018,"SI1PDB3-80 FS","SI1PDB3-80","SI1PXB3-20 FS","SI1PXB3-20",133,168,139,174,31,39,32,40,18,,"CCGT D1_Integrated Programme Schedule;OEM (Engineering & Deliverables);GAS AND STEAM TURBINE AREA;WATER & STEAM SYSTEM IN UMC;Debris Filter for Service Cooling System: Strainer/Skid PDB",1,1,0.0000005051,0.0008138352,0.0014242116,41,1.0,0.0001503957,0.0068493151,0.0030769231,0.0007625,0.0020887728,0.0045045045,0.0919282511,1.0,0.0283369572
1.5.10.12.5-7,SI1PDB2-60,"(DF) FINAL INPUT FOR MS3 CONCRETE DEBRIS FILTER PDB",7112,"CCGTD1_IPS",TT_FinMile,"61516",-,-,-,100,TK_Complete,31/05/2017,12/05/2017,31/05/2017,12/05/2017,"SI----2C00 FS,SI1PDB2-85 FS","SI----2C00,SI1PDB2-85","SI1PXB2-10 FS","SI1PXB2-10",96,130,96,130,22,30,22,30,6,,"CCGT D1_Integrated Programme Schedule;OEM (Engineering & Deliverables);GAS AND STEAM TURBINE AREA;WATER & STEAM SYSTEM IN UMC;Debris Filter for Service Cooling System: Strainer/Skid PDB",2,1,0.0000006625,0.0012207528,0.0012207528,0,1.0,0.0000812387,0.0136986301,0.0030769231,0.001,0.0031331593,0.0038610039,0.0,1.0,0.0
1.5.10.12.5-8,SI1PDB3-80,"(RFS) READY FOR SHIPMENT DEBRIS FILTER PDB",7112,"CCGTD1_IPS",TT_FinMile,"61516",-,-,-,100,TK_Complete,14/02/2018,04/01/2018,14/02/2018,04/01/2018,"SI1PDB3-25 FS","SI1PDB3-25","SI1PDB4-27 FS","SI1PDB4-27",133,163,133,163,31,38,31,38,18,,"CCGT D1_Integrated Programme Schedule;OEM (Engineering & Deliverables);GAS AND STEAM TURBINE AREA;WATER & STEAM SYSTEM IN UMC;Debris Filter for Service Cooling System: Strainer/Skid PDB",1,1,0.0000005879,0.001017294,0.0012207528,0,1.0,0.0000812387,0.0068493151,0.0030769231,0.0008875,0.0026109661,0.0038610039,0.0,1.0,0.0
1.5.10.12.5-9,SI1PDB2-65,"(DF) FINAL INPUT FOR M2 DEBRIS FILTER PDB",7112,"CCGTD1_IPS",TT_FinMile,"61516",-,-,-,100,TK_Complete,31/05/2017,12/05/2017,31/05/2017,12/05/2017,"SI1PDB2-85 FS,SI----2C00 FS","SI1PDB2-85,SI----2C00","SI1PXB2-10 FS","SI1PXB2-10",96,130,96,130,22,30,22,30,6,,"CCGT D1_Integrated Programme Schedule;OEM (Engineering & Deliverables);GAS AND STEAM TURBINE AREA;WATER & STEAM SYSTEM IN UMC;Debris Filter for Service Cooling System: Strainer/Skid PDB",2,1,0.0000006625,0.0012207528,0.0012207528,0,1.0,0.0000812387,0.0136986301,0.0030769231,0.001,0.0031331593,0.0038610039,0.0,1.0,0.0
1.5.10.12.6,61515,"Service Water Booster Pump / Aux Cooling Water Module PCB",7112,"CCGTD1_IPS",WBS,"61511",,,,100,Complete,17/12/2016,24/11/2016,15/03/2018,14/03/2018,,,,,72,105,137,173,16,24,32,40,,,"CCGT D1_Integrated Programme Schedule;OEM (Engineering & Deliverables);GAS AND STEAM TURBINE AREA;WATER & STEAM SYSTEM IN UMC"
1.5.10.12.6-1,SI1PCB2B65,"(DF) FINAL INPUT FOR M2 SERVICE COOLING WATER PUMP PCB",7112,"CCGTD1_IPS",TT_FinMile,"61515",-,-,-,100,TK_Complete,31/03/2017,30/03/2017,31/03/2017,30/03/2017,"SI1PCB2B85 FS","SI1PCB2B85","SI1PXB2-10 FS","SI1PXB2-10",87,123,87,123,20,28,20,28,3,,"CCGT D1_Integrated Programme Schedule;OEM (Engineering & Deliverables);GAS AND STEAM TURBINE AREA;WATER & STEAM SYSTEM IN UMC;Service Water Booster Pump / Aux Cooling Water Module PCB",1,1,0.0000009109,0.0012207528,0.0012207528,0,1.0,0.0000812387,0.0068493151,0.0030769231,0.001375,0.0031331593,0.0038610039,0.0,1.0,0.0
1.5.10.12.6-2,SI1PCB2B80,"QUOTATION STAGE SERVICE COOLING WATER PUMP PCB",7112,"CCGTD1_IPS",TT_Task,"61515",-,-,-,100,TK_Complete,02/02/2017,29/12/2016,08/03/2017,02/03/2017,"SI1PCB2B75 FS,SI1PGB2B75 FS,SI-3062-17 FS","SI1PCB2B75,SI1PGB2B75,SI-3062-17","SI1PCB2B85 FS","SI1PCB2B85",79,110,84,119,18,25,19,27,2,,"CCGT D1_Integrated Programme Schedule;OEM (Engineering & Deliverables);GAS AND STEAM TURBINE AREA;WATER & STEAM SYSTEM IN UMC;Service Water Booster Pump / Aux Cooling Water Module PCB",3,1,0.0000017245,0.0032553408,0.0008138352,34,0.0,0.0001824964,0.0205479452,0.0030769231,0.002603125,0.0083550914,0.0025740026,0.0762331839,0.0,0.0414901543
1.5.10.12.6-3,SI1PCB2B85,"ORDER PLACED SERVICE COOLING WATER PUMP PCB",7112,"CCGTD1_IPS",TT_Mile,"61515",-,-,-,100,TK_Complete,19/03/2017,03/03/2017,19/03/2017,03/03/2017,"SI1PCB2B80 FS","SI1PCB2B80","SI1PCB2B65 FS,SI1PCB2B60 FS,SI1PCB3B25 FS","SI1PCB2B65,SI1PCB2B60,SI1PCB3B25",85,120,85,120,19,28,19,28,3,,"CCGT D1_Integrated Programme Schedule;OEM (Engineering & Deliverables);GAS AND STEAM TURBINE AREA;WATER & STEAM SYSTEM IN UMC;Service Water Booster Pump / Aux Cooling Water Module PCB",1,3,0.0000021799,0.003051882,0.001017294,0,1.0,0.0000812387,0.0068493151,0.0092307692,0.003290625,0.0078328982,0.0032175032,0.0,1.0,0.0
1.5.10.12.6-4,SI1PCB2B75,"CONTRACT REVIEW, PREPARATION RFQ SERVICE COOLING WATER PUMP PCB",7112,"CCGTD1_IPS",TT_Task,"61515",-,-,-,100,TK_Complete,17/12/2016,24/11/2016,08/01/2017,16/12/2016,"SI----2C00 FS","SI----2C00","SI1PCB2B80 FS","SI1PCB2B80",72,105,75,109,16,24,17,25,1,,"CCGT D1_Integrated Programme Schedule;OEM (Engineering & Deliverables);GAS AND STEAM TURBINE AREA;WATER & STEAM SYSTEM IN UMC;Service Water Booster Pump / Aux Cooling Water Module PCB",1,1,0.0000001294,0.0034587996,0.0002034588,22,1.0,0.0000833115,0.0068493151,0.0030769231,0.0001953125,0.0088772846,0.0006435006,0.0493273543,1.0,0.0008493366
1.5.10.12.6-5,SI1PCB2B60,"(DF) FINAL INPUT FOR MS3 IN UMC SERVICE COOLING WATER PUMP PCB",7112,"CCGTD1_IPS",TT_FinMile,"61515",-,-,-,100,TK_Complete,31/03/2017,30/03/2017,31/03/2017,30/03/2017,"SI1PCB2B85 FS,SI----2C00 FS","SI1PCB2B85,SI----2C00","SI1UMC2-60 FS,SI1PXB2N60 FS","SI1UMC2-60,SI1PXB2N60",87,123,87,123,20,28,20,28,3,,"CCGT D1_Integrated Programme Schedule;OEM (Engineering & Deliverables);GAS AND STEAM TURBINE AREA;WATER & STEAM SYSTEM IN UMC;Service Water Booster Pump / Aux Cooling Water Module PCB",2,2,0.0000005755,0.0018311292,0.0012207528,0,1.0,0.0000812387,0.0136986301,0.0061538462,0.00086875,0.0046997389,0.0038610039,0.0,1.0,0.0
1.5.10.12.6-6,SI1PCB3B80,"(RFS) READY FOR SHIPMENT SERVICE COOLING WATER PUMP PCB",7112,"CCGTD1_IPS",TT_FinMile,"61515",-,-,-,100,TK_Complete,26/01/2018,15/12/2017,26/01/2018,15/12/2017,"SI1PCB3B25 FS","SI1PCB3B25","SI1PCB4B27 SS","SI1PCB4B27",130,161,130,161,30,37,30,37,17,,"CCGT D1_Integrated Programme Schedule;OEM (Engineering & Deliverables);GAS AND STEAM TURBINE AREA;WATER & STEAM SYSTEM IN UMC;Service Water Booster Pump / Aux Cooling Water Module PCB",1,1,0.000000619,0.001017294,0.0014242116,0,1.0,0.0000812387,0.0068493151,0.0030769231,0.000934375,0.0026109661,0.0045045045,0.0,1.0,0.0
1.5.10.12.6-7,SI1PCB4B27,"TRANSPORT SERVICE COOLING WATER PUMP PCB",7112,"CCGTD1_IPS",TT_Task,"61515",-,-,-,100,TK_Complete,26/01/2018,31/01/2018,15/03/2018,14/03/2018,"SI1PCB3B80 SS","SI1PCB3B80","SI1PXB3-20 FS","SI1PXB3-20",130,167,137,173,30,39,32,40,17,,"CCGT D1_Integrated Programme Schedule;OEM (Engineering & Deliverables);GAS AND STEAM TURBINE AREA;WATER & STEAM SYSTEM IN UMC;Service Water Booster Pump / Aux Cooling Water Module PCB",1,1,0.0000004948,0.0008138352,0.0016276704,48,1.0,0.0001503957,0.0068493151,0.0030769231,0.000746875,0.0020887728,0.0051480051,0.1076233184,1.0,0.0283369572
1.5.10.12.6-8,SI1PCB3B25,"DETAIL DESIGN, MANUFACTURING, SHOP TEST SERVICE COOLING WATER PUMP PCB",7112,"CCGTD1_IPS",TT_Task,"61515",-,-,-,100,TK_Complete,19/03/2017,04/03/2017,04/11/2017,06/12/2017,"SI1PCB2B85 FS","SI1PCB2B85","SI1PCB3B80 FS","SI1PCB3B80",85,120,118,159,19,28,27,37,3,,"CCGT D1_Integrated Programme Schedule;OEM (Engineering & Deliverables);GAS AND STEAM TURBINE AREA;WATER & STEAM SYSTEM IN UMC;Service Water Booster Pump / Aux Cooling Water Module PCB",1,1,0.0000006604,0.0012207528,0.0012207528,230,0.0,0.0001503957,0.0068493151,0.0030769231,0.000996875,0.0031331593,0.0038610039,0.5156950673,0.0,0.0283369572
1.5.10.12.7,61514,"Tube Cleaning System for Condenser: Strainer/Skid PAH",7112,"CCGTD1_IPS",WBS,"61511",,,,100,Complete,10/12/2016,09/12/2016,15/03/2018,17/01/2018,,,,,71,108,137,165,16,25,32,38,,,"CCGT D1_Integrated Programme Schedule;OEM (Engineering & Deliverables);GAS AND STEAM TURBINE AREA;WATER & STEAM SYSTEM IN UMC"
1.5.10.12.7-1,SI1PAH2-60,"(DF) FINAL INPUT FOR MS3 CONCRETE CONDENSER TUBE CLEANING SYSTEM PAH",7112,"CCGTD1_IPS",TT_FinMile,"61514",-,-,-,100,TK_Complete,05/05/2017,21/04/2017,05/05/2017,21/04/2017,"SI----2C00 FS,SI1PAH2-85 FS","SI----2C00,SI1PAH2-85","SI1UPY2-10 FS,SI1UMC2-60 FS","SI1UPY2-10,SI1UMC2-60",92,127,92,127,21,29,21,29,5,,"CCGT D1_Integrated Programme Schedule;OEM (Engineering & Deliverables);GAS AND STEAM TURBINE AREA;WATER & STEAM SYSTEM IN UMC;Tube Cleaning System for Condenser: Strainer/Skid PAH",2,2,0.0000013732,0.0014242116,0.0016276704,0,1.0,0.0000812387,0.0136986301,0.0061538462,0.0020729167,0.0036553525,0.0051480051,0.0,1.0,0.0
1.5.10.12.7-2,SI1PAH2-80,"QUOTATION STAGE CONDENSER TUBE CLEANING SYSTEM PAH",7112,"CCGTD1_IPS",TT_Task,"61514",-,-,-,100,TK_Complete,14/01/2017,30/12/2016,14/03/2017,21/04/2017,"SI1PAH2-75 FS,SI-PAC2B45 FS,SI-3062-17 FS","SI1PAH2-75,SI-PAC2B45,SI-3062-17","SI1PAH2-85 FS","SI1PAH2-85",76,111,84,127,17,25,19,29,1,,"CCGT D1_Integrated Programme Schedule;OEM (Engineering & Deliverables);GAS AND STEAM TURBINE AREA;WATER & STEAM SYSTEM IN UMC;Tube Cleaning System for Condenser: Strainer/Skid PAH",3,1,0.0000033537,0.003051882,0.0012207528,59,0.0,0.0002413926,0.0205479452,0.0030769231,0.0050625,0.0078328982,0.0038610039,0.1322869955,0.0,0.0656227694
1.5.10.12.7-3,SI1PAH2-85,"ORDER PLACED CONDENSER TUBE CLEANING SYSTEM PAH",7112,"CCGTD1_IPS",TT_Mile,"61514",-,-,-,100,TK_Complete,08/05/2017,22/04/2017,08/05/2017,22/04/2017,"SI1PAH2-80 FS","SI1PAH2-80","SI1PAH2A60 FS,SI1PAH2-60 FS,SI1PAH2-65 FS,SI1PAH3-25 FS","SI1PAH2A60,SI1PAH2-60,SI1PAH2-65,SI1PAH3-25",92,127,92,127,21,29,21,29,5,,"CCGT D1_Integrated Programme Schedule;OEM (Engineering & Deliverables);GAS AND STEAM TURBINE AREA;WATER & STEAM SYSTEM IN UMC;Tube Cleaning System for Condenser: Strainer/Skid PAH",1,4,0.0000036849,0.0028484232,0.0014242116,0,1.0,0.0000812387,0.0068493151,0.0123076923,0.0055625,0.007310705,0.0045045045,0.0,1.0,0.0
1.5.10.12.7-4,SI1PAH2A60,"(DF) FINAL INPUT FOR MS3 STEEL CONDENSER TUBE CLEANING SYSTEM PAH",7112,"CCGTD1_IPS",TT_FinMile,"61514",-,-,-,100,TK_Complete,31/05/2017,05/05/2017,31/05/2017,05/05/2017,"SI1PAH2-85 FS","SI1PAH2-85","","",96,129,96,129,22,30,22,30,6,,"CCGT D1_Integrated Programme Schedule;OEM (Engineering & Deliverables);GAS AND STEAM TURBINE AREA;WATER & STEAM SYSTEM IN UMC;Tube Cleaning System for Condenser: Strainer/Skid PAH",1,0,0.0,0.0,0.0016276704,0,1.0,0.0000812387,0.0068493151,0.0,0.0,0.0,0.0051480051,0.0,1.0,0.0
1.5.10.12.7-5,SI1PAH3-25,"DETAIL DESIGN, MANUFACTURING CONDENSER TUBE CLEANING SYSTEM PAH",7112,"CCGTD1_IPS",TT_Task,"61514",-,-,-,100,TK_Complete,01/05/2017,23/04/2017,14/01/2018,18/12/2017,"SI1PAH2-85 FS","SI1PAH2-85","SI1PAH3-80 FS","SI1PAH3-80",91,127,128,161,21,29,30,37,5,,"CCGT D1_Integrated Programme Schedule;OEM (Engineering & Deliverables);GAS AND STEAM TURBINE AREA;WATER & STEAM SYSTEM IN UMC;Tube Cleaning System for Condenser: Strainer/Skid PAH",1,1,0.0000009937,0.0012207528,0.0016276704,258,1.0,0.0001503957,0.0068493151,0.0030769231,0.0015,0.0031331593,0.0051480051,0.5784753363,1.0,0.0283369572
1.5.10.12.7-6,SI1PAH4-27,"TRANSPORT CONDENSER TUBE CLEANING SYSTEM PAH",7112,"CCGTD1_IPS",TT_Task,"61514",-,-,-,100,TK_Complete,26/01/2018,16/12/2017,15/03/2018,17/01/2018,"SI1PAH3-80 FS","SI1PAH3-80","SI1UPY3-20 FS","SI1UPY3-20",130,161,137,165,30,37,32,38,18,,"CCGT D1_Integrated Programme Schedule;OEM (Engineering & Deliverables);GAS AND STEAM TURBINE AREA;WATER & STEAM SYSTEM IN UMC;Tube Cleaning System for Condenser: Strainer/Skid PAH",1,1,0.0000006625,0.0008138352,0.002034588,48,1.0,0.0001503957,0.0068493151,0.0030769231,0.001,0.0020887728,0.0064350064,0.1076233184,1.0,0.0283369572
1.5.10.12.7-7,SI1PAH3-80,"(RFS) READY FOR SHIPMENT CONDENSER TUBE CLEANING SYSTEM PAH",7112,"CCGTD1_IPS",TT_FinMile,"61514",-,-,-,100,TK_Complete,26/01/2018,16/12/2017,26/01/2018,16/12/2017,"SI1PAH3-25 FS","SI1PAH3-25","SI1PAH4-27 FS","SI1PAH4-27",130,161,130,161,30,37,30,37,18,,"CCGT D1_Integrated Programme Schedule;OEM (Engineering & Deliverables);GAS AND STEAM TURBINE AREA;WATER & STEAM SYSTEM IN UMC;Tube Cleaning System for Condenser: Strainer/Skid PAH",1,1,0.0000008695,0.001017294,0.0018311292,0,1.0,0.0000812387,0.0068493151,0.0030769231,0.0013125,0.0026109661,0.0057915058,0.0,1.0,0.0
1.5.10.12.7-8,SI1PAH2-65,"(DF) FINAL INPUT FOR M2 CONDENSER TUBE CLEANING SYSTEM PAH",7112,"CCGTD1_IPS",TT_FinMile,"61514",-,-,-,100,TK_Complete,05/05/2017,21/04/2017,05/05/2017,21/04/2017,"SI1PAH2-85 FS","SI1PAH2-85","SI1UPY2-10 FS","SI1UPY2-10",92,127,92,127,21,29,21,29,5,,"CCGT D1_Integrated Programme Schedule;OEM (Engineering & Deliverables);GAS AND STEAM TURBINE AREA;WATER & STEAM SYSTEM IN UMC;Tube Cleaning System for Condenser: Strainer/Skid PAH",1,1,0.0000007246,0.001017294,0.0016276704,0,1.0,0.0000812387,0.0068493151,0.0030769231,0.00109375,0.0026109661,0.0051480051,0.0,1.0,0.0
1.5.10.12.7-9,SI1PAH2-75,"PREPARATION RFQ CONDENSER TUBE CLEANING SYSTEM PAH",7112,"CCGTD1_IPS",TT_Task,"61514",-,-,-,100,TK_Complete,10/12/2016,09/12/2016,30/12/2016,29/12/2016,"SI-P--2-05 FF","SI-P--2-05","SI1PAH2-80 FS","SI1PAH2-80",71,108,74,110,16,25,17,25,1,,"CCGT D1_Integrated Programme Schedule;OEM (Engineering & Deliverables);GAS AND STEAM TURBINE AREA;WATER & STEAM SYSTEM IN UMC;Tube Cleaning System for Condenser: Strainer/Skid PAH",1,1,0.0000006625,0.0032553408,0.0002034588,20,1.0,0.0000969562,0.0068493151,0.0030769231,0.001,0.0083550914,0.0006435006,0.0448430493,1.0,0.0064402175
1.5.10.12.8,61513,"Condensate Extraction Pump LCB",7112,"CCGTD1_IPS",WBS,"61511",,,,100,Complete,26/11/2016,10/11/2016,14/06/2018,01/06/2018,,,,,69,103,150,185,16,24,35,43,,,"CCGT D1_Integrated Programme Schedule;OEM (Engineering & Deliverables);GAS AND STEAM TURBINE AREA;WATER & STEAM SYSTEM IN UMC"
1.5.10.12.8-1,SI1LCB3B80,"(RFS) READY FOR SHIPMENT CONDENSATE EXTRACTION PUMP LCB",7112,"CCGTD1_IPS",TT_FinMile,"61513",-,-,-,100,TK_Complete,27/04/2018,25/05/2018,27/04/2018,25/05/2018,"SI1LCB3B25 FS","SI1LCB3B25","SI1LCB4B25 SS","SI1LCB4B25",143,184,143,184,33,42,33,42,26,,"CCGT D1_Integrated Programme Schedule;OEM (Engineering & Deliverables);GAS AND STEAM TURBINE AREA;WATER & STEAM SYSTEM IN UMC;Condensate Extraction Pump LCB",1,1,0.0000004968,0.0004069176,0.0012207528,0,1.0,0.0000812387,0.0068493151,0.0030769231,0.00075,0.0010443864,0.0038610039,0.0,1.0,0.0
1.5.10.12.8-2,SI1LCB2B65,"(DF) FINAL INPUT FOR M2 CONDENSATE EXTRACTION PUMP LCB",7112,"CCGTD1_IPS",TT_FinMile,"61513",-,-,-,100,TK_Complete,30/04/2017,11/04/2017,30/04/2017,11/04/2017,"SI1LCB2B85 FS","SI1LCB2B85","","",91,125,91,125,21,29,21,29,4,,"CCGT D1_Integrated Programme Schedule;OEM (Engineering & Deliverables);GAS AND STEAM TURBINE AREA;WATER & STEAM SYSTEM IN UMC;Condensate Extraction Pump LCB",1,0,0.0,0.0,0.001017294,0,1.0,0.0000812387,0.0068493151,0.0,0.0,0.0,0.0032175032,0.0,1.0,0.0
1.5.10.12.8-3,SI1LCB2B75,"CONTRACT REVIEW, PREPARATION RFQ CONDENSATE EXTRACTION PUMP LCB",7112,"CCGTD1_IPS",TT_Task,"61513",-,-,-,100,TK_Complete,26/11/2016,10/11/2016,14/01/2017,29/12/2016,"SI----2C00 FS","SI----2C00","SI1LCB2B10# FF,SI1LCB2B10# SS,SI1LCB2B80 FS","SI1LCB2B10#,SI1LCB2B10#,SI1LCB2B80",69,103,76,110,16,24,17,25,1,,"CCGT D1_Integrated Programme Schedule;OEM (Engineering & Deliverables);GAS AND STEAM TURBINE AREA;WATER & STEAM SYSTEM IN UMC;Condensate Extraction Pump LCB",1,1,0.0000002898,0.0034587996,0.0002034588,49,1.0,0.0000858555,0.0068493151,0.0030769231,0.0004375,0.0088772846,0.0006435006,0.1098654709,1.0,0.0018917042
1.5.10.12.8-4,SI1LCB2B14,"CONFIRMED PUMP CURVES CONDENSATE EXTRACTION PUMP LCB",7112,"CCGTD1_IPS",TT_Mile,"61513",-,-,-,100,TK_Complete,20/03/2017,16/03/2017,20/03/2017,16/03/2017,"SI1LCB2B85 FS,SI----2C00 SS","SI1LCB2B85,SI----2C00","SI-L--2I45 FS","SI-L--2I45",85,121,85,121,20,28,20,28,3,,"CCGT D1_Integrated Programme Schedule;OEM (Engineering & Deliverables);GAS AND STEAM TURBINE AREA;WATER & STEAM SYSTEM IN UMC;Condensate Extraction Pump LCB",2,1,0.0000001587,0.0002034588,0.001017294,0,1.0,0.0000812387,0.0136986301,0.0030769231,0.0002395833,0.0005221932,0.0032175032,0.0,1.0,0.0
1.5.10.12.8-5,SI1LCB3B25,"DETAIL DESIGN, MANUFACTURING, SHOP TEST CONDENSATE EXTRACTION PUMP LCB",7112,"CCGTD1_IPS",TT_Task,"61513",-,-,-,100,TK_Complete,26/08/2017,08/08/2017,14/06/2018,24/04/2018,"SI1LCB2B85 FS","SI1LCB2B85","SI1LCB3B80 FS","SI1LCB3B80",108,142,150,179,25,33,35,41,10,,"CCGT D1_Integrated Programme Schedule;OEM (Engineering & Deliverables);GAS AND STEAM TURBINE AREA;WATER & STEAM SYSTEM IN UMC;Condensate Extraction Pump LCB",1,1,0.0000006211,0.0006103764,0.001017294,292,1.0,0.0001503957,0.0068493151,0.0030769231,0.0009375,0.0015665796,0.0032175032,0.6547085202,1.0,0.0283369572
1.5.10.12.8-6,SI1LCB4B25,"TRANSPORT CONDENSATE EXTRACTION PUMP LCB",7112,"CCGTD1_IPS",TT_Task,"61513",-,-,-,100,TK_Complete,28/04/2018,25/05/2018,08/06/2018,01/06/2018,"SI1LCB3B80 SS","SI1LCB3B80","SI1LCB4B42 FS","SI1LCB4B42",143,184,149,185,33,42,34,43,26,,"CCGT D1_Integrated Programme Schedule;OEM (Engineering & Deliverables);GAS AND STEAM TURBINE AREA;WATER & STEAM SYSTEM IN UMC;Condensate Extraction Pump LCB",1,1,0.0000002898,0.0002034588,0.0014242116,41,1.0,0.0001503957,0.0068493151,0.0030769231,0.0004375,0.0005221932,0.0045045045,0.0919282511,1.0,0.0283369572
1.5.10.12.8-7,SI1LCB4B42,"(OTD-OS) ON SITE CONDENSATE EXTRACTION PUMP LCB",7112,"CCGTD1_IPS",TT_FinMile,"61513",-,-,-,100,TK_Complete,08/06/2018,01/06/2018,08/06/2018,01/06/2018,"SI1LCB4B25 FS","SI1LCB4B25","","",149,185,149,185,34,43,34,43,30,,"CCGT D1_Integrated Programme Schedule;OEM (Engineering & Deliverables);GAS AND STEAM TURBINE AREA;WATER & STEAM SYSTEM IN UMC;Condensate Extraction Pump LCB",1,0,0.0,0.0,0.0016276704,0,1.0,0.0000812387,0.0068493151,0.0,0.0,0.0,0.0051480051,0.0,1.0,0.0
1.5.10.12.8-8,SI1LCB2B80,"QUOTATION STAGE CONDENSATE EXTRACTION PUMP LCB",7112,"CCGTD1_IPS",TT_Task,"61513",-,-,-,100,TK_Complete,03/02/2017,30/12/2016,14/04/2017,14/03/2017,"SI-3062-17 FS,SI1LCB2B75 FS","SI-3062-17,SI1LCB2B75","SI1LCB2B10# SS,SI1LCB2B10# FF,SI1LCB2B85 FS","SI1LCB2B10#,SI1LCB2B10#,SI1LCB2B85",79,111,89,121,18,25,20,28,2,,"CCGT D1_Integrated Programme Schedule;OEM (Engineering & Deliverables);GAS AND STEAM TURBINE AREA;WATER & STEAM SYSTEM IN UMC;Condensate Extraction Pump LCB",2,1,0.0000015112,0.0032553408,0.0006103764,70,0.4,0.0001643679,0.0136986301,0.0030769231,0.00228125,0.0083550914,0.0019305019,0.1569506726,0.4,0.0340620052
1.5.10.12.8-9,SI1LCB2B60,"(DF) FINAL INPUT FOR MS3 CONDENSATE EXTRACTION PUMP LCB",7112,"CCGTD1_IPS",TT_FinMile,"61513",-,-,-,100,TK_Complete,30/04/2017,11/04/2017,30/04/2017,11/04/2017,"SI----2C00 FS,SI1LCB2B85 FS","SI----2C00,SI1LCB2B85","SI1UMC2Y60 FS,SI1UMC2E60 FS","SI1UMC2Y60,SI1UMC2E60",91,125,91,125,21,29,21,29,4,,"CCGT D1_Integrated Programme Schedule;OEM (Engineering & Deliverables);GAS AND STEAM TURBINE AREA;WATER & STEAM SYSTEM IN UMC;Condensate Extraction Pump LCB",2,2,0.0000013663,0.0014242116,0.001017294,0,1.0,0.0000812387,0.0136986301,0.0061538462,0.0020625,0.0036553525,0.0032175032,0.0,1.0,0.0
1.5.10.12.8-10,SI1LCB2B85,"ORDER PLACED CONDENSATE EXTRACTION PUMP LCB",7112,"CCGTD1_IPS",TT_Mile,"61513",-,-,-,100,TK_Complete,26/03/2017,15/03/2017,26/03/2017,15/03/2017,"SI1LCB2B80 FS","SI1LCB2B80","SI1LCB2B14 FS,SI1LCB2B60 FS,SI1LCB3B25 FS,SI1LCB2B65 FS","SI1LCB2B14,SI1LCB2B60,SI1LCB3B25,SI1LCB2B65",86,121,86,121,20,28,20,28,3,,"CCGT D1_Integrated Programme Schedule;OEM (Engineering & Deliverables);GAS AND STEAM TURBINE AREA;WATER & STEAM SYSTEM IN UMC;Condensate Extraction Pump LCB",1,4,0.0000020081,0.003051882,0.0008138352,0,1.0,0.0000812387,0.0068493151,0.0123076923,0.00303125,0.0078328982,0.0025740026,0.0,1.0,0.0
1.5.10.12.9,61512,"Electrical Superheater LBG",7112,"CCGTD1_IPS",WBS,"61511",,,,100,Complete,01/05/2017,29/04/2017,13/04/2018,15/03/2018,,,,,91,128,141,173,21,29,32,40,,,"CCGT D1_Integrated Programme Schedule;OEM (Engineering & Deliverables);GAS AND STEAM TURBINE AREA;WATER & STEAM SYSTEM IN UMC"
1.5.10.12.9-1,SI1LBG3C80,"(RFS) READY FOR SHIPMENT EL.SUPERHEATER LBG",7112,"CCGTD1_IPS",TT_FinMile,"61512",-,-,-,100,TK_Complete,26/02/2018,26/01/2018,26/02/2018,26/01/2018,"SI1LBG3C25 FS","SI1LBG3C25","SI1LBG4C25 FS","SI1LBG4C25",134,167,134,167,31,38,31,38,19,,"CCGT D1_Integrated Programme Schedule;OEM (Engineering & Deliverables);GAS AND STEAM TURBINE AREA;WATER & STEAM SYSTEM IN UMC;Electrical Superheater LBG",1,1,0.0000000828,0.0004069176,0.0002034588,0,1.0,0.0000812387,0.0068493151,0.0030769231,0.000125,0.0010443864,0.0006435006,0.0,1.0,0.0
1.5.10.12.9-2,SI1LBG3C25,"FABRICATION DESIGN, PROCUREMENT, PRE-FABRICATION EL.SUPERHEATER LBG",7112,"CCGTD1_IPS",TT_Task,"61512",-,-,-,100,TK_Complete,01/05/2017,29/04/2017,07/10/2017,08/12/2017,"","","SI1LBG3C80 FS","SI1LBG3C80",91,128,114,160,21,29,26,37,5,,"CCGT D1_Integrated Programme Schedule;OEM (Engineering & Deliverables);GAS AND STEAM TURBINE AREA;WATER & STEAM SYSTEM IN UMC;Electrical Superheater LBG",0,1,0.0,0.0006103764,0.0,159,0.0,0.0000812387,0.0,0.0030769231,0.0,0.0015665796,0.0,0.3565022422,0.0,0.0
1.5.10.12.9-3,SI1LBG4C25,"TRANSPORT ELECTRICAL SUPERHEATER LBG",7112,"CCGTD1_IPS",TT_Task,"61512",-,-,-,100,TK_Complete,08/03/2018,08/02/2018,12/04/2018,15/03/2018,"SI1LBG3C80 FS","SI1LBG3C80","SI1LBG4C42 FS","SI1LBG4C42",136,168,141,173,31,39,32,40,22,,"CCGT D1_Integrated Programme Schedule;OEM (Engineering & Deliverables);GAS AND STEAM TURBINE AREA;WATER & STEAM SYSTEM IN UMC;Electrical Superheater LBG",1,1,0.0000000828,0.0002034588,0.0004069176,35,1.0,0.0001503957,0.0068493151,0.0030769231,0.000125,0.0005221932,0.0012870013,0.0784753363,1.0,0.0283369572
1.5.10.12.9-4,SI1LBG4C42,"(OTD-OS) ON SITE ELECTRICAL SUPERHEATER LBG",7112,"CCGTD1_IPS",TT_FinMile,"61512",-,-,-,100,TK_Complete,13/04/2018,15/03/2018,13/04/2018,15/03/2018,"SI1LBG4C25 FS","SI1LBG4C25","","",141,173,141,173,32,40,32,40,24,,"CCGT D1_Integrated Programme Schedule;OEM (Engineering & Deliverables);GAS AND STEAM TURBINE AREA;WATER & STEAM SYSTEM IN UMC;Electrical Superheater LBG",1,0,0.0,0.0,0.0006103764,0,1.0,0.0000812387,0.0068493151,0.0,0.0,0.0,0.0019305019,0.0,1.0,0.0
1.5.10.13,61504,"GAS TURBINE & AUXILIARIES",7112,"CCGTD1_IPS",WBS,"61464",,,,100,Complete,14/01/2017,18/12/2016,08/05/2018,13/05/2018,,,,,76,109,144,182,17,25,33,42,,,"CCGT D1_Integrated Programme Schedule;OEM (Engineering & Deliverables);GAS AND STEAM TURBINE AREA"
1.5.10.13.1,61510,"GT & Aux. Fire Fighting System (incl. Gas Detection SGJ/CYQ)",7112,"CCGTD1_IPS",WBS,"61504",,,,100,Complete,01/04/2017,16/03/2017,08/05/2018,13/05/2018,,,,,87,121,144,182,20,28,33,42,,,"CCGT D1_Integrated Programme Schedule;OEM (Engineering & Deliverables);GAS AND STEAM TURBINE AREA;GAS TURBINE & AUXILIARIES"
1.5.10.13.1-1,SP1SGJ3-25,"DETAIL DESIGN / MANUFACTURING FIRE FIGHTING / GAS DETECTION SGJ / CYQ / CYE",7112,"CCGTD1_IPS",TT_Task,"61510",-,-,-,100,TK_Complete,01/04/2017,16/03/2017,22/12/2017,25/11/2017,"","","SP1SGJ3-80 FS","SP1SGJ3-80",87,121,125,158,20,28,29,36,3,,"CCGT D1_Integrated Programme Schedule;OEM (Engineering & Deliverables);GAS AND STEAM TURBINE AREA;GAS TURBINE & AUXILIARIES;GT & Aux. Fire Fighting System (incl. Gas Detection SGJ/CYQ)",0,1,0.0,0.0004069176,0.0,265,1.0,0.0000812387,0.0,0.0030769231,0.0,0.0010443864,0.0,0.5941704036,1.0,0.0
1.5.10.13.1-2,SP1SGJ3-80,"DELIVERY FIRE FIGHTING / GAS DETECTION SGJ / CYQ / CYE EX WORKS",7112,"CCGTD1_IPS",TT_Mile,"61510",-,-,-,100,TK_Complete,16/12/2017,04/12/2017,16/12/2017,04/12/2017,"SP1SGJ3-25 FS","SP1SGJ3-25","SI1SGJ4-27 FS","SI1SGJ4-27",124,159,124,159,29,37,29,37,16,,"CCGT D1_Integrated Programme Schedule;OEM (Engineering & Deliverables);GAS AND STEAM TURBINE AREA;GAS TURBINE & AUXILIARIES;GT & Aux. Fire Fighting System (incl. Gas Detection SGJ/CYQ)",1,1,0.0000000414,0.0002034588,0.0002034588,0,1.0,0.0000812387,0.0068493151,0.0030769231,0.0000625,0.0005221932,0.0006435006,0.0,1.0,0.0
1.5.10.13.1-3,SI1SGJ4-27,"TRANSPORT ECONOPAC FIRE PROT.SYSTEM CYE/SGJ",7112,"CCGTD1_IPS",TT_Task,"61510",-,-,-,100,TK_Complete,26/03/2018,18/03/2018,08/05/2018,13/05/2018,"SP1SGJ3-80 FS","SP1SGJ3-80","","",138,174,144,182,32,40,33,42,23,,"CCGT D1_Integrated Programme Schedule;OEM (Engineering & Deliverables);GAS AND STEAM TURBINE AREA;GAS TURBINE & AUXILIARIES;GT & Aux. Fire Fighting System (incl. Gas Detection SGJ/CYQ)",1,0,0.0,0.0,0.0004069176,43,0.0,0.0001503957,0.0068493151,0.0,0.0,0.0,0.0012870013,0.0964125561,0.0,0.0283369572
1.5.10.13.2,61509,"GT Enclosure incl. Aux. Sys. MPB",7112,"CCGTD1_IPS",WBS,"61504",,,,100,Complete,26/02/2018,14/01/2018,06/05/2018,22/02/2018,,,,,134,165,144,170,31,38,33,39,,,"CCGT D1_Integrated Programme Schedule;OEM (Engineering & Deliverables);GAS AND STEAM TURBINE AREA;GAS TURBINE & AUXILIARIES"
1.5.10.13.2-1,SI1MPB4E27,"TRANSPORT GT ENCLOSURE INCL.VENT.MPB/SAM",7112,"CCGTD1_IPS",TT_Task,"61509",-,-,-,100,TK_Complete,26/02/2018,14/01/2018,06/05/2018,22/02/2018,"","","","",134,165,144,170,31,38,33,39,19,,"CCGT D1_Integrated Programme Schedule;OEM (Engineering & Deliverables);GAS AND STEAM TURBINE AREA;GAS TURBINE & AUXILIARIES;GT Enclosure incl. Aux. Sys. MPB",0,0,0.0,0.0,0.0,69,1.0,0.0000812387,0.0,0.0,0.0,0.0,0.0,0.1547085202,1.0,0.0
1.5.10.13.3,61508,"Air intake system MBL",7112,"CCGTD1_IPS",WBS,"61504",,,,100,Complete,16/03/2017,02/03/2017,19/04/2018,01/04/2018,,,,,85,119,142,176,19,27,33,41,,,"CCGT D1_Integrated Programme Schedule;OEM (Engineering & Deliverables);GAS AND STEAM TURBINE AREA;GAS TURBINE & AUXILIARIES"
1.5.10.13.3-1,SP1MBL3-80,"DELIVERY AIR INTAKE SYSTEM MBL EX WORKS",7112,"CCGTD1_IPS",TT_Mile,"61508",-,-,-,100,TK_Complete,16/12/2017,15/12/2017,16/12/2017,15/12/2017,"SP1MBL3-25 FS","SP1MBL3-25","SP1MBL4-15 FS","SP1MBL4-15",124,161,124,161,29,37,29,37,16,,"CCGT D1_Integrated Programme Schedule;OEM (Engineering & Deliverables);GAS AND STEAM TURBINE AREA;GAS TURBINE & AUXILIARIES;Air intake system MBL",1,1,0.0000001242,0.0006103764,0.0002034588,0,1.0,0.0000812387,0.0068493151,0.0030769231,0.0001875,0.0015665796,0.0006435006,0.0,1.0,0.0
1.5.10.13.3-2,SP1MBL3-25,"DETAIL DESIGN / MANUFACTURING AIR INTAKE SYSTEM MBL",7112,"CCGTD1_IPS",TT_Task,"61508",-,-,-,100,TK_Complete,16/03/2017,02/03/2017,07/12/2017,23/11/2017,"","","SP1MBL3-80 FS","SP1MBL3-80",85,119,123,157,19,27,28,36,3,,"CCGT D1_Integrated Programme Schedule;OEM (Engineering & Deliverables);GAS AND STEAM TURBINE AREA;GAS TURBINE & AUXILIARIES;Air intake system MBL",0,1,0.0,0.0008138352,0.0,266,1.0,0.0000812387,0.0,0.0030769231,0.0,0.0020887728,0.0,0.5964125561,1.0,0.0
1.5.10.13.3-3,SP1MBL4-15,"TRANSPORT AIR INTAKE SYSTEM MBL TO PORT OF EXPORT",7112,"CCGTD1_IPS",TT_Task,"61508",-,-,-,100,TK_Complete,26/01/2018,02/01/2018,08/02/2018,10/01/2018,"SP1MBL3-80 FS","SP1MBL3-80","SI1MBL4-25 FS","SI1MBL4-25",130,163,132,164,30,38,30,38,16,,"CCGT D1_Integrated Programme Schedule;OEM (Engineering & Deliverables);GAS AND STEAM TURBINE AREA;GAS TURBINE & AUXILIARIES;Air intake system MBL",1,1,0.0000001656,0.0004069176,0.0004069176,13,1.0,0.0001503957,0.0068493151,0.0030769231,0.00025,0.0010443864,0.0012870013,0.0291479821,1.0,0.0283369572
1.5.10.13.3-4,SI1MBL4-25,"TRANSPORT AIR INTAKE SYSTEM MBL",7112,"CCGTD1_IPS",TT_Task,"61508",-,-,-,100,TK_Complete,09/02/2018,18/01/2018,19/04/2018,01/04/2018,"SP1MBL4-15 FS","SP1MBL4-15","SI1MBL4-42 FS","SI1MBL4-42",132,165,142,176,30,38,33,41,18,,"CCGT D1_Integrated Programme Schedule;OEM (Engineering & Deliverables);GAS AND STEAM TURBINE AREA;GAS TURBINE & AUXILIARIES;Air intake system MBL",1,1,0.0000001242,0.0002034588,0.0006103764,69,0.4,0.000209244,0.0068493151,0.0030769231,0.0001875,0.0005221932,0.0019305019,0.1547085202,0.4,0.0524499399
1.5.10.13.3-5,SI1MBL4-42,"(OTD-OS) ON SITE AIR INTAKE SYSTEM MBL",7112,"CCGTD1_IPS",TT_FinMile,"61508",-,-,-,100,TK_Complete,31/03/2018,01/04/2018,31/03/2018,01/04/2018,"SI1MBL4-25 FS","SI1MBL4-25","","",139,176,139,176,32,41,32,41,24,,"CCGT D1_Integrated Programme Schedule;OEM (Engineering & Deliverables);GAS AND STEAM TURBINE AREA;GAS TURBINE & AUXILIARIES;Air intake system MBL",1,0,0.0,0.0,0.0008138352,0,1.0,0.0000812387,0.0068493151,0.0,0.0,0.0,0.0025740026,0.0,1.0,0.0
1.5.10.13.4,61507,"Gas Turbine Auxiliary Systems MB-",7112,"CCGTD1_IPS",WBS,"61504",,,,100,Complete,26/03/2018,18/03/2018,08/05/2018,13/05/2018,,,,,138,174,144,182,32,40,33,42,,,"CCGT D1_Integrated Programme Schedule;OEM (Engineering & Deliverables);GAS AND STEAM TURBINE AREA;GAS TURBINE & AUXILIARIES"
1.5.10.13.4-1,SI1MB-4E29,"TRANSPORT GT AUXILIARIES MB-",7112,"CCGTD1_IPS",TT_Task,"61507",-,-,-,100,TK_Complete,26/03/2018,18/03/2018,08/05/2018,13/05/2018,"","","","",138,174,144,182,32,40,33,42,23,,"CCGT D1_Integrated Programme Schedule;OEM (Engineering & Deliverables);GAS AND STEAM TURBINE AREA;GAS TURBINE & AUXILIARIES;Gas Turbine Auxiliary Systems MB-",0,0,0.0,0.0,0.0,43,0.0,0.0000812387,0.0,0.0,0.0,0.0,0.0,0.0964125561,0.0,0.0
1.5.10.13.5,61506,"Gas Turbine MB-",7112,"CCGTD1_IPS",WBS,"61504",,,,100,Complete,14/01/2017,18/12/2016,12/04/2018,01/04/2018,,,,,76,109,141,176,17,25,32,41,,,"CCGT D1_Integrated Programme Schedule;OEM (Engineering & Deliverables);GAS AND STEAM TURBINE AREA;GAS TURBINE & AUXILIARIES"
1.5.10.13.5-1,SP1MB-2G80,"QUOTATION STAGE GT INSULATION MB-",7112,"CCGTD1_IPS",TT_Task,"61506",-,-,-,100,TK_Complete,15/05/2017,30/04/2017,28/05/2017,13/05/2017,"SP1MB-2G75 FS","SP1MB-2G75","SP1MB-2G85 FS","SP1MB-2G85",93,128,95,130,21,29,22,30,5,,"CCGT D1_Integrated Programme Schedule;OEM (Engineering & Deliverables);GAS AND STEAM TURBINE AREA;GAS TURBINE & AUXILIARIES;Gas Turbine MB-",1,1,0.0000002898,0.0008138352,0.0004069176,13,1.0,0.0001520771,0.0068493151,0.0030769231,0.0004375,0.0020887728,0.0012870013,0.0291479821,1.0,0.0290258996
1.5.10.13.5-2,SP1MB-3G25,"DESIGN / MANUFACTURING GT INSULATION MB-",7112,"CCGTD1_IPS",TT_Task,"61506",-,-,-,100,TK_Complete,01/06/2017,14/05/2017,01/01/2018,14/12/2017,"SP1MB-2G85 FS","SP1MB-2G85","SP1MB-3G80 FS","SP1MB-3G80",96,130,126,160,22,30,29,37,6,,"CCGT D1_Integrated Programme Schedule;OEM (Engineering & Deliverables);GAS AND STEAM TURBINE AREA;GAS TURBINE & AUXILIARIES;Gas Turbine MB-",1,1,0.0000002898,0.0004069176,0.0008138352,214,1.0,0.0001503957,0.0068493151,0.0030769231,0.0004375,0.0010443864,0.0025740026,0.4798206278,1.0,0.0283369572
1.5.10.13.5-3,SP1MB-2G75,"PREPARATION OF RFQ GT INSULATION MB-",7112,"CCGTD1_IPS",TT_Task,"61506",-,-,-,100,TK_Complete,01/05/2017,16/04/2017,14/05/2017,29/04/2017,"SI----2D00 FS","SI----2D00","SP1MB-2G80 FS","SP1MB-2G80",91,126,93,128,21,29,21,29,4,,"CCGT D1_Integrated Programme Schedule;OEM (Engineering & Deliverables);GAS AND STEAM TURBINE AREA;GAS TURBINE & AUXILIARIES;Gas Turbine MB-",1,1,0.0000001656,0.001017294,0.0002034588,13,1.0,0.0000832146,0.0068493151,0.0030769231,0.00025,0.0026109661,0.0006435006,0.0291479821,1.0,0.0008096273
1.5.10.13.5-4,SP1MB-2G85,"ORDER PLACED GT INSULATION MB-",7112,"CCGTD1_IPS",TT_Mile,"61506",-,-,-,100,TK_Complete,01/06/2017,14/05/2017,01/06/2017,14/05/2017,"SP1MB-2G80 FS","SP1MB-2G80","SP1MB-3G25 FS","SP1MB-3G25",96,130,96,130,22,30,22,30,6,,"CCGT D1_Integrated Programme Schedule;OEM (Engineering & Deliverables);GAS AND STEAM TURBINE AREA;GAS TURBINE & AUXILIARIES;Gas Turbine MB-",1,1,0.0000003312,0.0006103764,0.0006103764,0,1.0,0.0000812387,0.0068493151,0.0030769231,0.0005,0.0015665796,0.0019305019,0.0,1.0,0.0
1.5.10.13.5-5,SP1MB-4-15,"TRANSPORT GAS TURBINE MB- TO NORTH SEA PORT",7112,"CCGTD1_IPS",TT_Task,"61506",-,-,-,100,TK_Complete,26/01/2018,02/01/2018,01/02/2018,10/01/2018,"SP1MB-3-80 FS","SP1MB-3-80","SI1MBA4-27 FS","SI1MBA4-27",130,163,131,164,30,38,30,38,17,,"CCGT D1_Integrated Programme Schedule;OEM (Engineering & Deliverables);GAS AND STEAM TURBINE AREA;GAS TURBINE & AUXILIARIES;Gas Turbine MB-",1,1,0.0000001242,0.0002034588,0.0006103764,6,0.8,0.0001503957,0.0068493151,0.0030769231,0.0001875,0.0005221932,0.0019305019,0.0134529148,0.8,0.0283369572
1.5.10.13.5-6,SI1MBA4-27,"TRANSPORT GAS TURBINE MB",7112,"CCGTD1_IPS",TT_Task,"61506",-,-,-,100,TK_Complete,02/02/2018,18/01/2018,12/04/2018,01/04/2018,"SP1MB-4-15 FS,SP1MB-3G80 FS","SP1MB-4-15,SP1MB-3G80","","",131,165,141,176,30,38,32,41,18,,"CCGT D1_Integrated Programme Schedule;OEM (Engineering & Deliverables);GAS AND STEAM TURBINE AREA;GAS TURBINE & AUXILIARIES;Gas Turbine MB-",2,0,0.0,0.0,0.0018311292,69,0.8,0.0002784011,0.0136986301,0.0,0.0,0.0,0.0057915058,0.1547085202,0.8,0.0807868971
1.5.10.13.5-7,SP1MB-3-25,"DESIGN / PROCUREMENT / MANUFACTURING GAS TURBINE",7112,"CCGTD1_IPS",TT_Task,"61506",-,-,-,100,TK_Complete,14/01/2017,18/12/2016,12/03/2018,14/12/2017,"SI----2D00 FS","SI----2D00","SP1MB-3-80 FS","SP1MB-3-80",76,109,136,160,17,25,31,37,1,,"CCGT D1_Integrated Programme Schedule;OEM (Engineering & Deliverables);GAS AND STEAM TURBINE AREA;GAS TURBINE & AUXILIARIES;Gas Turbine MB-",1,1,0.0000001242,0.0006103764,0.0002034588,422,1.0,0.00014538,0.0068493151,0.0030769231,0.0001875,0.0015665796,0.0006435006,0.9461883408,1.0,0.0262817493
1.5.10.13.5-8,SP1MB-3-80,"DELIVERY GAS TURBINE MB- EX WORKS",7112,"CCGTD1_IPS",TT_Mile,"61506",-,-,-,100,TK_Complete,26/01/2018,02/01/2018,26/01/2018,02/01/2018,"SP1MB-3-25 FS","SP1MB-3-25","SP1MB-4-15 FS","SP1MB-4-15",130,163,130,163,30,38,30,38,18,,"CCGT D1_Integrated Programme Schedule;OEM (Engineering & Deliverables);GAS AND STEAM TURBINE AREA;GAS TURBINE & AUXILIARIES;Gas Turbine MB-",1,1,0.0000001656,0.0004069176,0.0004069176,0,1.0,0.0000812387,0.0068493151,0.0030769231,0.00025,0.0010443864,0.0012870013,0.0,1.0,0.0
1.5.10.13.5-9,SP1MB-3G80,"DELIVERY GT INSULATION MB- EX WORKS",7112,"CCGTD1_IPS",TT_Mile,"61506",-,-,-,100,TK_Complete,26/01/2018,15/12/2017,26/01/2018,15/12/2017,"SP1MB-3G25 FS","SP1MB-3G25","SI1MBA4-27 FS","SI1MBA4-27",130,161,130,161,30,37,30,37,18,,"CCGT D1_Integrated Programme Schedule;OEM (Engineering & Deliverables);GAS AND STEAM TURBINE AREA;GAS TURBINE & AUXILIARIES;Gas Turbine MB-",1,1,0.0000001656,0.0002034588,0.001017294,0,1.0,0.0000812387,0.0068493151,0.0030769231,0.00025,0.0005221932,0.0032175032,0.0,1.0,0.0
1.5.10.13.6,61505,"Interconnecting Piping Econopac  M--",7112,"CCGTD1_IPS",WBS,"61504",,,,100,Complete,26/02/2018,14/02/2018,06/05/2018,21/03/2018,,,,,134,169,144,174,31,39,33,40,,,"CCGT D1_Integrated Programme Schedule;OEM (Engineering & Deliverables);GAS AND STEAM TURBINE AREA;GAS TURBINE & AUXILIARIES"
1.5.10.13.6-1,SP1MB-3A80,"DELIVERY GT INTERCONNECTING PIPING MB- EX WORKS",7112,"CCGTD1_IPS",TT_Mile,"61505",-,-,-,100,TK_Complete,26/02/2018,14/02/2018,26/02/2018,14/02/2018,"","","SI1MB-4E31 FS","SI1MB-4E31",134,169,134,169,31,39,31,39,19,,"CCGT D1_Integrated Programme Schedule;OEM (Engineering & Deliverables);GAS AND STEAM TURBINE AREA;GAS TURBINE & AUXILIARIES;Interconnecting Piping Econopac  M--",0,1,0.0,0.0002034588,0.0,0,1.0,0.0000812387,0.0,0.0030769231,0.0,0.0005221932,0.0,0.0,1.0,0.0
1.5.10.13.6-2,SI1MB-4E31,"TRANSPORT GT INTERCONNECTING PIPING MB-",7112,"CCGTD1_IPS",TT_Task,"61505",-,-,-,100,TK_Complete,26/02/2018,15/02/2018,06/05/2018,21/03/2018,"SP1MB-3A80 FS","SP1MB-3A80","","",134,169,144,174,31,39,33,40,19,,"CCGT D1_Integrated Programme Schedule;OEM (Engineering & Deliverables);GAS AND STEAM TURBINE AREA;GAS TURBINE & AUXILIARIES;Interconnecting Piping Econopac  M--",1,0,0.0,0.0,0.0002034588,69,1.0,0.0001503957,0.0068493151,0.0,0.0,0.0,0.0006435006,0.1547085202,1.0,0.0283369572
1.5.10.14,61501,"GENERATOR & AUXILIARIES",7112,"CCGTD1_IPS",WBS,"61464",,,,100,Complete,24/11/2016,24/11/2016,08/05/2018,13/05/2018,,,,,69,105,144,182,16,24,33,42,,,"CCGT D1_Integrated Programme Schedule;OEM (Engineering & Deliverables);GAS AND STEAM TURBINE AREA"
1.5.10.14.1,61503,"ST Generator Skids (Cooler, ....) MKA",7112,"CCGTD1_IPS",WBS,"61501",,,,100,Complete,26/03/2018,18/03/2018,08/05/2018,13/05/2018,,,,,138,174,144,182,32,40,33,42,,,"CCGT D1_Integrated Programme Schedule;OEM (Engineering & Deliverables);GAS AND STEAM TURBINE AREA;GENERATOR & AUXILIARIES"
1.5.10.14.1-1,SI1MKA4E27,"TRANSPORT GENERATOR SKIDS MKA",7112,"CCGTD1_IPS",TT_Task,"61503",-,-,-,100,TK_Complete,26/03/2018,18/03/2018,08/05/2018,13/05/2018,"","","","",138,174,144,182,32,40,33,42,23,,"CCGT D1_Integrated Programme Schedule;OEM (Engineering & Deliverables);GAS AND STEAM TURBINE AREA;GENERATOR & AUXILIARIES;ST Generator Skids (Cooler, ....) MKA",0,0,0.0,0.0,0.0,43,0.0,0.0000812387,0.0,0.0,0.0,0.0,0.0,0.0964125561,0.0,0.0
1.5.10.14.2,61502,"ST Generator MKA",7112,"CCGTD1_IPS",WBS,"61501",,,,100,Complete,24/11/2016,24/11/2016,05/04/2018,01/04/2018,,,,,69,105,140,176,16,24,32,41,,,"CCGT D1_Integrated Programme Schedule;OEM (Engineering & Deliverables);GAS AND STEAM TURBINE AREA;GENERATOR & AUXILIARIES"
1.5.10.14.2-1,SP1MKA2-85,"ORDER PLACED ST GENERATOR MKA INCL. COOLER MKA70",7112,"CCGTD1_IPS",TT_Mile,"61502",-,-,-,100,TK_Complete,26/11/2016,24/11/2016,26/11/2016,24/11/2016,"SI----2D00 FS","SI----2D00","SP1MKA3-25 SS,SI-B--2A55 FS","SP1MKA3-25,SI-B--2A55",69,105,69,105,16,24,16,24,1,,"CCGT D1_Integrated Programme Schedule;OEM (Engineering & Deliverables);GAS AND STEAM TURBINE AREA;GENERATOR & AUXILIARIES;ST Generator MKA",1,2,0.0000010351,0.00508647,0.0002034588,0,1.0,0.0000812387,0.0068493151,0.0061538462,0.0015625,0.0130548303,0.0006435006,0.0,1.0,0.0
1.5.10.14.2-2,SP1MKA3-25,"MANUFACTURING ST GENERATOR MKA INCL. COOLER MKA70",7112,"CCGTD1_IPS",TT_Task,"61502",-,-,-,100,TK_Complete,24/11/2016,24/11/2016,13/01/2018,14/12/2017,"SP1MKA2-85 SS","SP1MKA2-85","SP1MKA3-80 FS","SP1MKA3-80",69,105,128,160,16,24,29,37,0,,"CCGT D1_Integrated Programme Schedule;OEM (Engineering & Deliverables);GAS AND STEAM TURBINE AREA;GENERATOR & AUXILIARIES;ST Generator MKA",1,1,0.0000002484,0.0006103764,0.0004069176,415,1.0,0.0001503957,0.0068493151,0.0030769231,0.000375,0.0015665796,0.0012870013,0.9304932735,1.0,0.0283369572
1.5.10.14.2-3,SP1MKA4-15,"TRANSPORT ST GENERATOR MKA INCL. COOLER MKA70 TO PORT OF EXPORT",7112,"CCGTD1_IPS",TT_Task,"61502",-,-,-,100,TK_Complete,26/01/2018,02/01/2018,01/02/2018,10/01/2018,"SP1MKA3-80 FS","SP1MKA3-80","SI1MKA4-27 FS","SI1MKA4-27",130,163,131,164,30,38,30,38,17,,"CCGT D1_Integrated Programme Schedule;OEM (Engineering & Deliverables);GAS AND STEAM TURBINE AREA;GENERATOR & AUXILIARIES;ST Generator MKA",1,1,0.0000001656,0.0002034588,0.0008138352,6,0.6,0.0001503957,0.0068493151,0.0030769231,0.00025,0.0005221932,0.0025740026,0.0134529148,0.6,0.0283369572
1.5.10.14.2-4,SP1MKA3-80,"DELIVERY ST GENERATOR MKA INCL. COOLER MKA70 EX WORKS",7112,"CCGTD1_IPS",TT_Mile,"61502",-,-,-,100,TK_Complete,26/01/2018,02/01/2018,26/01/2018,02/01/2018,"SP1MKA3-25 FS","SP1MKA3-25","SP1MKA4-15 FS","SP1MKA4-15",130,163,130,163,30,38,30,38,17,,"CCGT D1_Integrated Programme Schedule;OEM (Engineering & Deliverables);GAS AND STEAM TURBINE AREA;GENERATOR & AUXILIARIES;ST Generator MKA",1,1,0.0000002484,0.0004069176,0.0006103764,0,1.0,0.0000812387,0.0068493151,0.0030769231,0.000375,0.0010443864,0.0019305019,0.0,1.0,0.0
1.5.10.14.2-5,SI1MKA4-27,"TRANSPORT GENERATOR MK",7112,"CCGTD1_IPS",TT_Task,"61502",-,-,-,100,TK_Complete,26/01/2018,18/01/2018,05/04/2018,01/04/2018,"SP1MKA4-15 FS","SP1MKA4-15","","",130,165,140,176,30,38,32,41,17,,"CCGT D1_Integrated Programme Schedule;OEM (Engineering & Deliverables);GAS AND STEAM TURBINE AREA;GENERATOR & AUXILIARIES;ST Generator MKA",1,0,0.0,0.0,0.001017294,69,0.8,0.000209244,0.0068493151,0.0,0.0,0.0,0.0032175032,0.1547085202,0.8,0.0524499399
1.5.10.15,61489,"STEAM TURBINE & AUXILIARIES",7112,"CCGTD1_IPS",WBS,"61464",,,,100,Complete,26/11/2016,20/11/2016,18/04/2018,04/04/2018,,,,,69,105,142,176,16,24,33,41,,,"CCGT D1_Integrated Programme Schedule;OEM (Engineering & Deliverables);GAS AND STEAM TURBINE AREA"
1.5.10.15.1,61500,"ST Enclosure MPB20",7112,"CCGTD1_IPS",WBS,"61489",,,,100,Complete,26/01/2018,19/01/2018,18/04/2018,21/03/2018,,,,,130,166,142,174,30,38,33,40,,,"CCGT D1_Integrated Programme Schedule;OEM (Engineering & Deliverables);GAS AND STEAM TURBINE AREA;STEAM TURBINE & AUXILIARIES"
1.5.10.15.1-1,SP1MPB3-80,"DELIVERY ST ENCLOSURE MPB20 EX WORKS",7112,"CCGTD1_IPS",TT_Mile,"61500",-,-,-,100,TK_Complete,26/01/2018,19/01/2018,26/01/2018,19/01/2018,"SP1MA-3-82 FS","SP1MA-3-82","SP1MPB4-15 FS","SP1MPB4-15",130,166,130,166,30,38,30,38,17,,"CCGT D1_Integrated Programme Schedule;OEM (Engineering & Deliverables);GAS AND STEAM TURBINE AREA;STEAM TURBINE & AUXILIARIES;ST Enclosure MPB20",1,1,0.0000001656,0.0004069176,0.0004069176,0,1.0,0.0000812387,0.0068493151,0.0030769231,0.00025,0.0010443864,0.0012870013,0.0,1.0,0.0
1.5.10.15.1-2,SP1MPB4-15,"TRANSPORT ST ENCLOSURE MPB20 TO NORTH SEA PORT",7112,"CCGTD1_IPS",TT_Task,"61500",-,-,-,100,TK_Complete,26/01/2018,19/01/2018,01/02/2018,25/01/2018,"SP1MPB3-80 FS","SP1MPB3-80","SI1MPB4-27 FS","SI1MPB4-27",130,166,131,166,30,38,30,38,17,,"CCGT D1_Integrated Programme Schedule;OEM (Engineering & Deliverables);GAS AND STEAM TURBINE AREA;STEAM TURBINE & AUXILIARIES;ST Enclosure MPB20",1,1,0.0000001242,0.0002034588,0.0006103764,6,1.0,0.0001503957,0.0068493151,0.0030769231,0.0001875,0.0005221932,0.0019305019,0.0134529148,1.0,0.0283369572
1.5.10.15.1-3,SI1MPB4-27,"TRANSPORT ST NOISE PROTECTION SYSTEM MPB20",7112,"CCGTD1_IPS",TT_Task,"61500",-,-,-,100,TK_Complete,15/02/2018,15/02/2018,18/04/2018,21/03/2018,"SP1MPB4-15 FS","SP1MPB4-15","","",133,169,142,174,31,39,33,40,18,,"CCGT D1_Integrated Programme Schedule;OEM (Engineering & Deliverables);GAS AND STEAM TURBINE AREA;STEAM TURBINE & AUXILIARIES;ST Enclosure MPB20",1,0,0.0,0.0,0.0008138352,62,1.0,0.000209244,0.0068493151,0.0,0.0,0.0,0.0025740026,0.1390134529,1.0,0.0524499399
1.5.10.15.2,61499,"Hydraulic Oil System (incl. Protection Equipment) MAX",7112,"CCGTD1_IPS",WBS,"61489",,,,100,Complete,17/12/2017,16/11/2017,31/03/2018,01/04/2018,,,,,124,156,139,176,29,36,32,41,,,"CCGT D1_Integrated Programme Schedule;OEM (Engineering & Deliverables);GAS AND STEAM TURBINE AREA;STEAM TURBINE & AUXILIARIES"
1.5.10.15.2-1,SP1MAX4-15,"TRANSPORT ST HYDRAULIC SYSTEM MAX TO NORTH SEA PORT",7112,"CCGTD1_IPS",TT_Task,"61499",-,-,-,100,TK_Complete,26/01/2018,08/01/2018,01/02/2018,14/01/2018,"SP1MAX3-80 FS","SP1MAX3-80","SI1MAX4-25 FS","SI1MAX4-25",130,164,131,165,30,38,30,38,17,,"CCGT D1_Integrated Programme Schedule;OEM (Engineering & Deliverables);GAS AND STEAM TURBINE AREA;STEAM TURBINE & AUXILIARIES;Hydraulic Oil System (incl. Protection Equipment) MAX",1,1,0.0000000828,0.0004069176,0.0002034588,6,1.0,0.0001503957,0.0068493151,0.0030769231,0.000125,0.0010443864,0.0006435006,0.0134529148,1.0,0.0283369572
1.5.10.15.2-2,SP1MAX3-80,"DELIVERY ST HYDRAULIC SYSTEM MAX EX WORKS",7112,"CCGTD1_IPS",TT_Mile,"61499",-,-,-,100,TK_Complete,17/12/2017,16/11/2017,17/12/2017,16/11/2017,"","","SP1MAX4-15 FS","SP1MAX4-15",124,156,124,156,29,36,29,36,16,,"CCGT D1_Integrated Programme Schedule;OEM (Engineering & Deliverables);GAS AND STEAM TURBINE AREA;STEAM TURBINE & AUXILIARIES;Hydraulic Oil System (incl. Protection Equipment) MAX",0,1,0.0,0.0006103764,0.0,0,1.0,0.0000812387,0.0,0.0030769231,0.0,0.0015665796,0.0,0.0,1.0,0.0
1.5.10.15.2-3,SI1MAX4-42,"(OTD-OS) ON SITE HYDRAULIC SYSTEM MAX",7112,"CCGTD1_IPS",TT_FinMile,"61499",-,-,-,100,TK_Complete,31/03/2018,01/04/2018,31/03/2018,01/04/2018,"SI1MAX4-25 FS","SI1MAX4-25","","",139,176,139,176,32,41,32,41,24,,"CCGT D1_Integrated Programme Schedule;OEM (Engineering & Deliverables);GAS AND STEAM TURBINE AREA;STEAM TURBINE & AUXILIARIES;Hydraulic Oil System (incl. Protection Equipment) MAX",1,0,0.0,0.0,0.0006103764,0,1.0,0.0000812387,0.0068493151,0.0,0.0,0.0,0.0019305019,0.0,1.0,0.0
1.5.10.15.2-4,SI1MAX4-25,"TRANSPORT TO SITE HYDRAULIC SYSTEM MAX",7112,"CCGTD1_IPS",TT_Task,"61499",-,-,-,100,TK_Complete,26/01/2018,18/01/2018,26/03/2018,01/04/2018,"SP1MAX4-15 FS","SP1MAX4-15","SI1MAX4-42 FS","SI1MAX4-42",130,165,138,176,30,38,32,41,17,,"CCGT D1_Integrated Programme Schedule;OEM (Engineering & Deliverables);GAS AND STEAM TURBINE AREA;STEAM TURBINE & AUXILIARIES;Hydraulic Oil System (incl. Protection Equipment) MAX",1,1,0.0000000828,0.0002034588,0.0004069176,59,0.0,0.000209244,0.0068493151,0.0030769231,0.000125,0.0005221932,0.0012870013,0.1322869955,0.0,0.0524499399
1.5.10.15.3,61498,"Gland Steam System MAW",7112,"CCGTD1_IPS",WBS,"61489",,,,100,Complete,05/01/2018,04/12/2017,31/03/2018,01/04/2018,,,,,127,159,139,176,29,37,32,41,,,"CCGT D1_Integrated Programme Schedule;OEM (Engineering & Deliverables);GAS AND STEAM TURBINE AREA;STEAM TURBINE & AUXILIARIES"
1.5.10.15.3-1,SP1MAW4-15,"TRANSPORT ST GLAND STEAM CONDENSER MAW TO NORTH SEA PORT",7112,"CCGTD1_IPS",TT_Task,"61498",-,-,-,100,TK_Complete,26/01/2018,08/01/2018,01/02/2018,14/01/2018,"SP1MAW3-80 FS","SP1MAW3-80","SI1MAW4-25 FS","SI1MAW4-25",130,164,131,165,30,38,30,38,17,,"CCGT D1_Integrated Programme Schedule;OEM (Engineering & Deliverables);GAS AND STEAM TURBINE AREA;STEAM TURBINE & AUXILIARIES;Gland Steam System MAW",1,1,0.0000000828,0.0004069176,0.0002034588,6,1.0,0.0001503957,0.0068493151,0.0030769231,0.000125,0.0010443864,0.0006435006,0.0134529148,1.0,0.0283369572
1.5.10.15.3-2,SP1MAW3-80,"DELIVERY ST GLAND STEAM CONDENSER MAW EX WORKS",7112,"CCGTD1_IPS",TT_Mile,"61498",-,-,-,100,TK_Complete,05/01/2018,04/12/2017,05/01/2018,04/12/2017,"","","SP1MAW4-15 FS","SP1MAW4-15",127,159,127,159,29,37,29,37,16,,"CCGT D1_Integrated Programme Schedule;OEM (Engineering & Deliverables);GAS AND STEAM TURBINE AREA;STEAM TURBINE & AUXILIARIES;Gland Steam System MAW",0,1,0.0,0.0006103764,0.0,0,1.0,0.0000812387,0.0,0.0030769231,0.0,0.0015665796,0.0,0.0,1.0,0.0
1.5.10.15.3-3,SI1MAW4-42,"(OTD-OS) ON SITE ST GLAND STEAM CONDENSER MAW",7112,"CCGTD1_IPS",TT_FinMile,"61498",-,-,-,100,TK_Complete,31/03/2018,01/04/2018,31/03/2018,01/04/2018,"SI1MAW4-25 FS","SI1MAW4-25","","",139,176,139,176,32,41,32,41,24,,"CCGT D1_Integrated Programme Schedule;OEM (Engineering & Deliverables);GAS AND STEAM TURBINE AREA;STEAM TURBINE & AUXILIARIES;Gland Steam System MAW",1,0,0.0,0.0,0.0006103764,0,1.0,0.0000812387,0.0068493151,0.0,0.0,0.0,0.0019305019,0.0,1.0,0.0
1.5.10.15.3-4,SI1MAW4-25,"TRANSPORT TO SITE ST GLAND STEAM CONDENSER MAW",7112,"CCGTD1_IPS",TT_Task,"61498",-,-,-,100,TK_Complete,18/01/2018,18/01/2018,28/03/2018,01/04/2018,"SP1MAW4-15 FS","SP1MAW4-15","SI1MAW4-42 FS","SI1MAW4-42",129,165,139,176,30,38,32,41,16,,"CCGT D1_Integrated Programme Schedule;OEM (Engineering & Deliverables);GAS AND STEAM TURBINE AREA;STEAM TURBINE & AUXILIARIES;Gland Steam System MAW",1,1,0.0000000828,0.0002034588,0.0004069176,69,0.6,0.000209244,0.0068493151,0.0030769231,0.000125,0.0005221932,0.0012870013,0.1547085202,0.6,0.0524499399
1.5.10.15.4,61497,"Lube Oil / Lifting Oil System MAV",7112,"CCGTD1_IPS",WBS,"61489",,,,100,Complete,26/01/2018,04/01/2018,31/03/2018,01/04/2018,,,,,130,163,139,176,30,38,32,41,,,"CCGT D1_Integrated Programme Schedule;OEM (Engineering & Deliverables);GAS AND STEAM TURBINE AREA;STEAM TURBINE & AUXILIARIES"
1.5.10.15.4-1,SP1MAV4-15,"TRANSPORT ST LUBE OIL MODULE MAV TO NORTH SEA PORT",7112,"CCGTD1_IPS",TT_Task,"61497",-,-,-,100,TK_Complete,26/01/2018,08/01/2018,01/02/2018,14/01/2018,"SP1MAV3-80 FS","SP1MAV3-80","SI1MAV4-25 FS","SI1MAV4-25",130,164,131,165,30,38,30,38,17,,"CCGT D1_Integrated Programme Schedule;OEM (Engineering & Deliverables);GAS AND STEAM TURBINE AREA;STEAM TURBINE & AUXILIARIES;Lube Oil / Lifting Oil System MAV",1,1,0.0000000828,0.0004069176,0.0002034588,6,1.0,0.0001503957,0.0068493151,0.0030769231,0.000125,0.0010443864,0.0006435006,0.0134529148,1.0,0.0283369572
1.5.10.15.4-2,SP1MAV3-80,"DELIVERY ST LUBE OIL MODULE MAV EX WORKS",7112,"CCGTD1_IPS",TT_Mile,"61497",-,-,-,100,TK_Complete,19/02/2018,04/01/2018,19/02/2018,04/01/2018,"","","SP1MAV4-15 FS","SP1MAV4-15",133,163,133,163,31,38,31,38,18,,"CCGT D1_Integrated Programme Schedule;OEM (Engineering & Deliverables);GAS AND STEAM TURBINE AREA;STEAM TURBINE & AUXILIARIES;Lube Oil / Lifting Oil System MAV",0,1,0.0,0.0006103764,0.0,0,1.0,0.0000812387,0.0,0.0030769231,0.0,0.0015665796,0.0,0.0,1.0,0.0
1.5.10.15.4-3,SI1MAV4-25,"TRANSPORT LUBE OIL MODUL MAV",7112,"CCGTD1_IPS",TT_Task,"61497",-,-,-,100,TK_Complete,26/01/2018,18/01/2018,15/03/2018,01/04/2018,"SP1MAV4-15 FS","SP1MAV4-15","SI1MAV4-42 FS","SI1MAV4-42",130,165,137,176,30,38,32,41,17,,"CCGT D1_Integrated Programme Schedule;OEM (Engineering & Deliverables);GAS AND STEAM TURBINE AREA;STEAM TURBINE & AUXILIARIES;Lube Oil / Lifting Oil System MAV",1,1,0.0000000828,0.0002034588,0.0004069176,48,0.0,0.000209244,0.0068493151,0.0030769231,0.000125,0.0005221932,0.0012870013,0.1076233184,0.0,0.0524499399
1.5.10.15.4-4,SI1MAV4-42,"(OTD-OS) ON SITE LUBE OIL MODUL MAV",7112,"CCGTD1_IPS",TT_FinMile,"61497",-,-,-,100,TK_Complete,31/03/2018,01/04/2018,31/03/2018,01/04/2018,"SI1MAV4-25 FS","SI1MAV4-25","","",139,176,139,176,32,41,32,41,24,,"CCGT D1_Integrated Programme Schedule;OEM (Engineering & Deliverables);GAS AND STEAM TURBINE AREA;STEAM TURBINE & AUXILIARIES;Lube Oil / Lifting Oil System MAV",1,0,0.0,0.0,0.0006103764,0,1.0,0.0000812387,0.0068493151,0.0,0.0,0.0,0.0019305019,0.0,1.0,0.0
1.5.10.15.5,61496,"Air Removal System (Steam Side) MAJ",7112,"CCGTD1_IPS",WBS,"61489",,,,100,Complete,04/03/2018,02/03/2018,26/03/2018,23/03/2018,,,,,135,172,138,175,31,40,32,40,,,"CCGT D1_Integrated Programme Schedule;OEM (Engineering & Deliverables);GAS AND STEAM TURBINE AREA;STEAM TURBINE & AUXILIARIES"
1.5.10.15.5-1,SI1MA-4-61,"TRANSPORT REMOVAL SYSTEM MAJ (China factory to Site)",7112,"CCGTD1_IPS",TT_Task,"61496",-,-,-,100,TK_Complete,04/03/2018,04/03/2018,18/03/2018,23/03/2018,"","","SI1MAJ4-46 FS","SI1MAJ4-46",135,172,137,175,31,40,32,40,21,,"CCGT D1_Integrated Programme Schedule;OEM (Engineering & Deliverables);GAS AND STEAM TURBINE AREA;STEAM TURBINE & AUXILIARIES;Air Removal System (Steam Side) MAJ",0,1,0.0,0.0002034588,0.0,14,0.4,0.0000812387,0.0,0.0030769231,0.0,0.0005221932,0.0,0.0313901345,0.4,0.0
1.5.10.15.5-2,SP1MAJ3-80,"DELIVERY AIR REMOVAL SYSTEM MAJ EX WORKS",7112,"CCGTD1_IPS",TT_Mile,"61496",-,-,-,100,TK_Complete,26/03/2018,02/03/2018,26/03/2018,02/03/2018,"SP1MA-3-82 FS","SP1MA-3-82","","",138,172,138,172,32,40,32,40,23,,"CCGT D1_Integrated Programme Schedule;OEM (Engineering & Deliverables);GAS AND STEAM TURBINE AREA;STEAM TURBINE & AUXILIARIES;Air Removal System (Steam Side) MAJ",1,0,0.0,0.0,0.0004069176,0,1.0,0.0000812387,0.0068493151,0.0,0.0,0.0,0.0012870013,0.0,1.0,0.0
1.5.10.15.5-3,SI1MAJ4-46,"(OTD-OS) ON SITE REMOVAL SYSTEM MAJ",7112,"CCGTD1_IPS",TT_FinMile,"61496",-,-,-,100,TK_Complete,26/03/2018,23/03/2018,26/03/2018,23/03/2018,"SI1MA-4-61 FS","SI1MA-4-61","","",138,175,138,175,32,40,32,40,23,,"CCGT D1_Integrated Programme Schedule;OEM (Engineering & Deliverables);GAS AND STEAM TURBINE AREA;STEAM TURBINE & AUXILIARIES;Air Removal System (Steam Side) MAJ",1,0,0.0,0.0,0.0002034588,0,1.0,0.0000812387,0.0068493151,0.0,0.0,0.0,0.0006435006,0.0,1.0,0.0
1.5.10.15.6,61495,"ST Condenser MAG",7112,"CCGTD1_IPS",WBS,"61489",,,,100,Complete,01/03/2017,22/02/2017,01/04/2018,04/04/2018,,,,,83,118,139,176,19,27,32,41,,,"CCGT D1_Integrated Programme Schedule;OEM (Engineering & Deliverables);GAS AND STEAM TURBINE AREA;STEAM TURBINE & AUXILIARIES"
1.5.10.15.6-1,SP1MAG3-80,"DELIVERY ST CONDENSER MAG EX WORKS",7112,"CCGTD1_IPS",TT_Mile,"61495",-,-,-,100,TK_Complete,26/01/2018,03/01/2018,26/01/2018,03/01/2018,"SP1MAG3-25 FS","SP1MAG3-25","SP1MAG4-15 FS","SP1MAG4-15",130,163,130,163,30,38,30,38,17,,"CCGT D1_Integrated Programme Schedule;OEM (Engineering & Deliverables);GAS AND STEAM TURBINE AREA;STEAM TURBINE & AUXILIARIES;ST Condenser MAG",1,1,0.0000001242,0.0006103764,0.0002034588,0,1.0,0.0000812387,0.0068493151,0.0030769231,0.0001875,0.0015665796,0.0006435006,0.0,1.0,0.0
1.5.10.15.6-2,SP1MAG3-25,"DESIGN / MANUFACTURING ST CONDENSER MAG",7112,"CCGTD1_IPS",TT_Task,"61495",-,-,-,100,TK_Complete,01/03/2017,22/02/2017,23/02/2018,03/01/2018,"","","SP1MAG3-80 FS","SP1MAG3-80",83,118,134,163,19,27,31,38,2,,"CCGT D1_Integrated Programme Schedule;OEM (Engineering & Deliverables);GAS AND STEAM TURBINE AREA;STEAM TURBINE & AUXILIARIES;ST Condenser MAG",0,1,0.0,0.0008138352,0.0,359,1.0,0.0000812387,0.0,0.0030769231,0.0,0.0020887728,0.0,0.8049327354,1.0,0.0
1.5.10.15.6-3,SP1MAG4-15,"TRANSPORT ST CONDENSER MAG TO PORT OF EXPORT",7112,"CCGTD1_IPS",TT_Task,"61495",-,-,-,100,TK_Complete,26/03/2018,26/02/2018,01/04/2018,28/02/2018,"SP1MAG3-80 FS","SP1MAG3-80","SI1MAG4-25 FS","SI1MAG4-25",138,171,139,171,32,40,32,40,23,,"CCGT D1_Integrated Programme Schedule;OEM (Engineering & Deliverables);GAS AND STEAM TURBINE AREA;STEAM TURBINE & AUXILIARIES;ST Condenser MAG",1,1,0.0000001656,0.0004069176,0.0004069176,6,1.0,0.0001503957,0.0068493151,0.0030769231,0.00025,0.0010443864,0.0012870013,0.0134529148,1.0,0.0283369572
1.5.10.15.6-4,SI1MAG4-25,"TRANSPORT CONDENSER MAG",7112,"CCGTD1_IPS",TT_Task,"61495",-,-,-,100,TK_Complete,07/03/2018,07/03/2018,24/03/2018,04/04/2018,"SP1MAG4-15 FS","SP1MAG4-15","SI1MAG4-42 FS","SI1MAG4-42",136,172,138,176,31,40,32,41,22,,"CCGT D1_Integrated Programme Schedule;OEM (Engineering & Deliverables);GAS AND STEAM TURBINE AREA;STEAM TURBINE & AUXILIARIES;ST Condenser MAG",1,1,0.0000001242,0.0002034588,0.0006103764,17,0.0,0.000209244,0.0068493151,0.0030769231,0.0001875,0.0005221932,0.0019305019,0.0381165919,0.0,0.0524499399
1.5.10.15.6-5,SI1MAG4-42,"(OTD-OS) ON SITE CONDENSER MAG",7112,"CCGTD1_IPS",TT_FinMile,"61495",-,-,-,100,TK_Complete,31/03/2018,04/04/2018,31/03/2018,04/04/2018,"SI1MAG4-25 FS","SI1MAG4-25","","",139,176,139,176,32,41,32,41,24,,"CCGT D1_Integrated Programme Schedule;OEM (Engineering & Deliverables);GAS AND STEAM TURBINE AREA;STEAM TURBINE & AUXILIARIES;ST Condenser MAG",1,0,0.0,0.0,0.0008138352,0,1.0,0.0000812387,0.0068493151,0.0,0.0,0.0,0.0025740026,0.0,1.0,0.0
1.5.10.15.7,61494,"Valves & Aux. MA-",7112,"CCGTD1_IPS",WBS,"61489",,,,100,Complete,26/09/2017,15/09/2017,13/11/2017,24/10/2017,,,,,112,148,119,153,26,34,27,35,,,"CCGT D1_Integrated Programme Schedule;OEM (Engineering & Deliverables);GAS AND STEAM TURBINE AREA;STEAM TURBINE & AUXILIARIES"
1.5.10.15.7-1,SI1MA-4-57,"TRANSPORT ST VALVES (for MAL00Y MODULE) TO MODULE ASSEMBLY SHOP",7112,"CCGTD1_IPS",TT_Task,"61494",-,-,-,100,TK_Complete,26/09/2017,15/09/2017,13/11/2017,24/10/2017,"SP1MA-3-88 FS","SP1MA-3-88","SI1MAL3-25 FS","SI1MAL3-25",112,148,119,153,26,34,27,35,12,,"CCGT D1_Integrated Programme Schedule;OEM (Engineering & Deliverables);GAS AND STEAM TURBINE AREA;STEAM TURBINE & AUXILIARIES;Valves & Aux. MA-",1,1,0.0000002484,0.0006103764,0.0004069176,48,1.0,0.0001503957,0.0068493151,0.0030769231,0.000375,0.0015665796,0.0012870013,0.1076233184,1.0,0.0283369572
1.5.10.15.7-2,SP1MA-3-88,"DELIVERY ST VALVES (for MAL00Y MODULE) EX WORKS",7112,"CCGTD1_IPS",TT_Mile,"61494",-,-,-,100,TK_Complete,26/09/2017,15/09/2017,26/09/2017,15/09/2017,"SP1MA-3-25 SS","SP1MA-3-25","SI1MA-4-57 FS","SI1MA-4-57",112,148,112,148,26,34,26,34,12,,"CCGT D1_Integrated Programme Schedule;OEM (Engineering & Deliverables);GAS AND STEAM TURBINE AREA;STEAM TURBINE & AUXILIARIES;Valves & Aux. MA-",1,1,0.0000001656,0.0008138352,0.0002034588,0,1.0,0.0000812387,0.0068493151,0.0030769231,0.00025,0.0020887728,0.0006435006,0.0,1.0,0.0
1.5.10.15.8,61493,"Steam Turbine - LP-Turbine",7112,"CCGTD1_IPS",WBS,"61489",,,,100,Complete,26/11/2017,27/10/2017,12/04/2018,04/04/2018,,,,,121,154,141,176,28,35,32,41,,,"CCGT D1_Integrated Programme Schedule;OEM (Engineering & Deliverables);GAS AND STEAM TURBINE AREA;STEAM TURBINE & AUXILIARIES"
1.5.10.15.8-1,SP1MA-4-22,"TRANSPORT ST MA- (LP OUTER CASING) TO BANTEN PORT",7112,"CCGTD1_IPS",TT_Task,"61493",-,-,-,100,TK_Complete,26/01/2018,30/11/2017,01/02/2018,06/12/2017,"SP1MA-3-84 FS","SP1MA-3-84","SI1MA-4-65 FS","SI1MA-4-65",130,158,131,159,30,37,30,37,17,,"CCGT D1_Integrated Programme Schedule;OEM (Engineering & Deliverables);GAS AND STEAM TURBINE AREA;STEAM TURBINE & AUXILIARIES;Steam Turbine - LP-Turbine",1,1,0.0,0.0002034588,0.0006103764,6,1.0,0.0000992797,0.0068493151,0.0030769231,0.0,0.0005221932,0.0019305019,0.0134529148,1.0,0.0073922497
1.5.10.15.8-2,SP1MA-4-26,"TRANSPORT ST MA- (LP-ROTOR, INNER CASING) TO NORTH SEA PORT",7112,"CCGTD1_IPS",TT_Task,"61493",-,-,-,100,TK_Complete,26/01/2018,28/12/2017,01/02/2018,03/01/2018,"SP1MA-3-86 FS","SP1MA-3-86","SI1MA-4-67 FS","SI1MA-4-67",130,162,131,163,30,38,30,38,17,,"CCGT D1_Integrated Programme Schedule;OEM (Engineering & Deliverables);GAS AND STEAM TURBINE AREA;STEAM TURBINE & AUXILIARIES;Steam Turbine - LP-Turbine",1,1,0.0000001242,0.0002034588,0.0006103764,6,1.0,0.0001503957,0.0068493151,0.0030769231,0.0001875,0.0005221932,0.0019305019,0.0134529148,1.0,0.0283369572
1.5.10.15.8-3,SP1MA-3-84,"DELIVERY ST MA- (LP OUTER CASING) EX WORKS",7112,"CCGTD1_IPS",TT_Mile,"61493",-,-,-,100,TK_Complete,26/11/2017,27/10/2017,26/11/2017,27/10/2017,"SP1MA-3-82 FS","SP1MA-3-82","SI1MA-4-65 FS,SP1MA-4-22 FS","SI1MA-4-65,SP1MA-4-22",121,154,121,154,28,35,28,35,15,,"CCGT D1_Integrated Programme Schedule;OEM (Engineering & Deliverables);GAS AND STEAM TURBINE AREA;STEAM TURBINE & AUXILIARIES;Steam Turbine - LP-Turbine",1,2,0.0000001656,0.0004069176,0.0004069176,0,1.0,0.0000812387,0.0068493151,0.0061538462,0.00025,0.0010443864,0.0012870013,0.0,1.0,0.0
1.5.10.15.8-4,SP1MA-3-86,"DELIVERY ST MA- (LP ROTOR, INNERCASING) EX WORKS",7112,"CCGTD1_IPS",TT_Mile,"61493",-,-,-,100,TK_Complete,26/01/2018,14/12/2017,26/01/2018,14/12/2017,"SP1MA-3-82 FS","SP1MA-3-82","SP1MA-4-26 FS","SP1MA-4-26",130,160,130,160,30,37,30,37,17,,"CCGT D1_Integrated Programme Schedule;OEM (Engineering & Deliverables);GAS AND STEAM TURBINE AREA;STEAM TURBINE & AUXILIARIES;Steam Turbine - LP-Turbine",1,1,0.0000001656,0.0004069176,0.0004069176,0,1.0,0.0000812387,0.0068493151,0.0030769231,0.00025,0.0010443864,0.0012870013,0.0,1.0,0.0
1.5.10.15.8-5,SI1MA-4-65,"TRANSPORT ST MA- (LP OUTER CASING)",7112,"CCGTD1_IPS",TT_Task,"61493",-,-,-,100,TK_Complete,26/03/2018,07/03/2018,12/04/2018,04/04/2018,"SP1MA-4-22 FS,SP1MA-3-84 FS","SP1MA-4-22,SP1MA-3-84","","",138,172,141,176,32,40,32,41,23,,"CCGT D1_Integrated Programme Schedule;OEM (Engineering & Deliverables);GAS AND STEAM TURBINE AREA;STEAM TURBINE & AUXILIARIES;Steam Turbine - LP-Turbine",2,0,0.0,0.0,0.0008138352,17,0.0,0.0002168635,0.0136986301,0.0,0.0,0.0,0.0025740026,0.0381165919,0.0,0.055572008
1.5.10.15.8-6,SI1MA-4-67,"TRANSPORT ST MA- (LP-ROTOR, INNER CASING)",7112,"CCGTD1_IPS",TT_Task,"61493",-,-,-,100,TK_Complete,26/01/2018,18/01/2018,05/04/2018,01/04/2018,"SP1MA-4-26 FS","SP1MA-4-26","","",130,165,140,176,30,38,32,41,17,,"CCGT D1_Integrated Programme Schedule;OEM (Engineering & Deliverables);GAS AND STEAM TURBINE AREA;STEAM TURBINE & AUXILIARIES;Steam Turbine - LP-Turbine",1,0,0.0,0.0,0.0008138352,69,0.6,0.000209244,0.0068493151,0.0,0.0,0.0,0.0025740026,0.1547085202,0.6,0.0524499399
1.5.10.15.9,61492,"Steam Turbine - HP/IP-Turbine",7112,"CCGTD1_IPS",WBS,"61489",,,,100,Complete,26/01/2018,12/12/2017,31/03/2018,01/04/2018,,,,,130,160,139,176,30,37,32,41,,,"CCGT D1_Integrated Programme Schedule;OEM (Engineering & Deliverables);GAS AND STEAM TURBINE AREA;STEAM TURBINE & AUXILIARIES"
1.5.10.15.9-1,SP1MA-4-15,"TRANSPORT STEAM TURBINE MA- (HP/IP) TO NORTH SEA PORT",7112,"CCGTD1_IPS",TT_Task,"61492",-,-,-,100,TK_Complete,26/01/2018,12/01/2018,01/02/2018,15/01/2018,"SP1MA-3-82 FS","SP1MA-3-82","SI1MA-4-63 FS","SI1MA-4-63",130,165,131,165,30,38,30,38,16,,"CCGT D1_Integrated Programme Schedule;OEM (Engineering & Deliverables);GAS AND STEAM TURBINE AREA;STEAM TURBINE & AUXILIARIES;Steam Turbine - HP/IP-Turbine",1,1,0.0000000828,0.0002034588,0.0004069176,6,1.0,0.0000876224,0.0068493151,0.0030769231,0.000125,0.0005221932,0.0012870013,0.0134529148,1.0,0.0026157191
1.5.10.15.9-2,SP1MA-3-82,"DELIVERY STEAM TURBINE  MA- (HP/IP) EX WORKS",7112,"CCGTD1_IPS",TT_Mile,"61492",-,-,-,100,TK_Complete,26/01/2018,12/12/2017,26/01/2018,12/12/2017,"SP1MA-3-25 FS","SP1MA-3-25","SP1MA-4-15 FS,SP1MAJ3-80 FS,SP1MPB3-80 FS,SP1MA-3-84 FS,SP1MA-3-86 FS,SI1C--4-27 FS","SP1MA-4-15,SP1MAJ3-80,SP1MPB3-80,SP1MA-3-84,SP1MA-3-86,SI1C--4-27",130,160,130,160,30,37,30,37,17,,"CCGT D1_Integrated Programme Schedule;OEM (Engineering & Deliverables);GAS AND STEAM TURBINE AREA;STEAM TURBINE & AUXILIARIES;Steam Turbine - HP/IP-Turbine",1,6,0.0000005383,0.0026449644,0.0002034588,0,1.0,0.0000812387,0.0068493151,0.0184615385,0.0008125,0.0067885117,0.0006435006,0.0,1.0,0.0
1.5.10.15.9-3,SI1MA-4-63,"TRANSPORT STEAM TURBINE MA- (HP/IP) (incl. FCA)",7112,"CCGTD1_IPS",TT_Task,"61492",-,-,-,100,TK_Complete,26/01/2018,18/01/2018,31/03/2018,01/04/2018,"SP1MA-4-15 FS","SP1MA-4-15","","",130,165,139,176,30,38,32,41,17,,"CCGT D1_Integrated Programme Schedule;OEM (Engineering & Deliverables);GAS AND STEAM TURBINE AREA;STEAM TURBINE & AUXILIARIES;Steam Turbine - HP/IP-Turbine",1,0,0.0,0.0,0.0006103764,64,0.0,0.0001558279,0.0068493151,0.0,0.0,0.0,0.0019305019,0.1434977578,0.0,0.030562771
1.5.10.15.10,61491,"Steam Turbine Bearings MAD",7112,"CCGTD1_IPS",WBS,"61489",,,,100,Complete,26/10/2017,06/10/2017,21/01/2018,08/01/2018,,,,,117,151,129,164,27,35,30,38,,,"CCGT D1_Integrated Programme Schedule;OEM (Engineering & Deliverables);GAS AND STEAM TURBINE AREA;STEAM TURBINE & AUXILIARIES"
1.5.10.15.10-1,SP1MAD3-80,"DELIVERY ST BEARINGS MAD EX WORKS",7112,"CCGTD1_IPS",TT_Mile,"61491",-,-,-,100,TK_Complete,26/10/2017,06/10/2017,26/10/2017,06/10/2017,"","","SP1MAD4-15 FS","SP1MAD4-15",117,151,117,151,27,35,27,35,13,,"CCGT D1_Integrated Programme Schedule;OEM (Engineering & Deliverables);GAS AND STEAM TURBINE AREA;STEAM TURBINE & AUXILIARIES;Steam Turbine Bearings MAD",0,1,0.0,0.0004069176,0.0,0,1.0,0.0000812387,0.0,0.0030769231,0.0,0.0010443864,0.0,0.0,1.0,0.0
1.5.10.15.10-2,SP1MAD4-15,"TRANSPORT ST BEARINGS MAD TO NORTH SEA PORT",7112,"CCGTD1_IPS",TT_Task,"61491",-,-,-,100,TK_Complete,26/10/2017,06/10/2017,01/11/2017,12/10/2017,"SP1MAD3-80 FS","SP1MAD3-80","SI1MAD4-27 FS","SI1MAD4-27",117,151,118,151,27,35,27,35,13,,"CCGT D1_Integrated Programme Schedule;OEM (Engineering & Deliverables);GAS AND STEAM TURBINE AREA;STEAM TURBINE & AUXILIARIES;Steam Turbine Bearings MAD",1,1,0.0000000414,0.0002034588,0.0002034588,6,1.0,0.0001503957,0.0068493151,0.0030769231,0.0000625,0.0005221932,0.0006435006,0.0134529148,1.0,0.0283369572
1.5.10.15.10-3,SI1MAD4-27,"TRANSPORT ST BEARINGS MAD",7112,"CCGTD1_IPS",TT_Task,"61491",-,-,-,100,TK_Complete,16/12/2017,03/12/2017,21/01/2018,08/01/2018,"SP1MAD4-15 FS","SP1MAD4-15","","",124,159,129,164,29,37,30,38,16,,"CCGT D1_Integrated Programme Schedule;OEM (Engineering & Deliverables);GAS AND STEAM TURBINE AREA;STEAM TURBINE & AUXILIARIES;Steam Turbine Bearings MAD",1,0,0.0,0.0,0.0004069176,36,1.0,0.000209244,0.0068493151,0.0,0.0,0.0,0.0012870013,0.0807174888,1.0,0.0524499399
1.5.10.15.11,61490,"Steam Turbine MA-",7112,"CCGTD1_IPS",WBS,"61489",,,,100,Complete,26/11/2016,20/11/2016,24/01/2018,21/11/2017,,,,,69,105,130,157,16,24,30,36,,,"CCGT D1_Integrated Programme Schedule;OEM (Engineering & Deliverables);GAS AND STEAM TURBINE AREA;STEAM TURBINE & AUXILIARIES"
1.5.10.15.11-1,SP1MA-3-25,"DETAIL DESIGN / MANUFACTURING / ASSEMBLY HP/IP-LP ST & ST-AUXILIARIES MA",7112,"CCGTD1_IPS",TT_Task,"61490",-,-,-,100,TK_Complete,26/11/2016,20/11/2016,24/01/2018,21/11/2017,"","","SP1MA-3-88 SS,SP1MA-3-82 FS","SP1MA-3-88,SP1MA-3-82",69,105,130,157,16,24,30,36,1,,"CCGT D1_Integrated Programme Schedule;OEM (Engineering & Deliverables);GAS AND STEAM TURBINE AREA;STEAM TURBINE & AUXILIARIES;Steam Turbine MA-",0,2,0.0,0.0038657172,0.0,424,1.0,0.0000812387,0.0,0.0061538462,0.0,0.009921671,0.0,0.9506726457,1.0,0.0
1.5.10.16,61465,"GAS AND STEAM TURBINE BUILDING",7112,"CCGTD1_IPS",WBS,"61464",,,,100,Complete,14/01/2017,12/12/2016,10/07/2018,15/11/2018,,,,,76,108,153,208,17,25,35,48,,,"CCGT D1_Integrated Programme Schedule;OEM (Engineering & Deliverables);GAS AND STEAM TURBINE AREA"
1.5.10.16.1,61488,"Crane in UMC (Annex)  SMM03",7112,"CCGTD1_IPS",WBS,"61465",,,,100,Complete,01/06/2017,30/05/2017,25/02/2018,15/01/2018,,,,,96,132,134,165,22,30,31,38,,,"CCGT D1_Integrated Programme Schedule;OEM (Engineering & Deliverables);GAS AND STEAM TURBINE AREA;GAS AND STEAM TURBINE BUILDING"
1.5.10.16.1-1,SI1SMM3A25,"FABRICATION DESIGN, MANUFACTURING, SHOP TEST CRANE SMM03 FOR UMC",7112,"CCGTD1_IPS",TT_Task,"61488",-,-,-,100,TK_Complete,01/06/2017,30/05/2017,29/11/2017,15/12/2017,"","","SI1SMM3A80 FS","SI1SMM3A80",96,132,122,161,22,30,28,37,6,,"CCGT D1_Integrated Programme Schedule;OEM (Engineering & Deliverables);GAS AND STEAM TURBINE AREA;GAS AND STEAM TURBINE BUILDING;Crane in UMC (Annex)  SMM03",0,1,0.0,0.0006103764,0.0,181,0.0,0.0000812387,0.0,0.0030769231,0.0,0.0015665796,0.0,0.4058295964,0.0,0.0
1.5.10.16.1-2,SI1SMM4A27,"TRANSPORT CRANES SMM03 FOR UMC",7112,"CCGTD1_IPS",TT_Task,"61488",-,-,-,100,TK_Complete,26/01/2018,15/12/2017,24/02/2018,15/01/2018,"SI1SMM3A80 FS","SI1SMM3A80","SI1SMM4A40 FS","SI1SMM4A40",130,161,134,165,30,37,31,38,17,,"CCGT D1_Integrated Programme Schedule;OEM (Engineering & Deliverables);GAS AND STEAM TURBINE AREA;GAS AND STEAM TURBINE BUILDING;Crane in UMC (Annex)  SMM03",1,1,0.0000000828,0.0002034588,0.0004069176,29,0.8,0.0001503957,0.0068493151,0.0030769231,0.000125,0.0005221932,0.0012870013,0.0650224215,0.8,0.0283369572
1.5.10.16.1-3,SI1SMM4A40,"(OTD-OS) ON SITE CRANES SMM03 FOR UMC",7112,"CCGTD1_IPS",TT_FinMile,"61488",-,-,-,100,TK_Complete,25/02/2018,15/01/2018,25/02/2018,15/01/2018,"SI1SMM4A27 FS","SI1SMM4A27","","",134,165,134,165,31,38,31,38,18,,"CCGT D1_Integrated Programme Schedule;OEM (Engineering & Deliverables);GAS AND STEAM TURBINE AREA;GAS AND STEAM TURBINE BUILDING;Crane in UMC (Annex)  SMM03",1,0,0.0,0.0,0.0006103764,0,1.0,0.0000812387,0.0068493151,0.0,0.0,0.0,0.0019305019,0.0,1.0,0.0
1.5.10.16.1-4,SI1SMM3A80,"(RFS) READY FOR SHIPMENT CRANES SMM03 FOR UMC",7112,"CCGTD1_IPS",TT_FinMile,"61488",-,-,-,100,TK_Complete,26/01/2018,14/12/2017,26/01/2018,14/12/2017,"SI1SMM3A25 FS","SI1SMM3A25","SI1SMM4A27 FS","SI1SMM4A27",130,160,130,160,30,37,30,37,17,,"CCGT D1_Integrated Programme Schedule;OEM (Engineering & Deliverables);GAS AND STEAM TURBINE AREA;GAS AND STEAM TURBINE BUILDING;Crane in UMC (Annex)  SMM03",1,1,0.0000000828,0.0004069176,0.0002034588,0,1.0,0.0000812387,0.0068493151,0.0030769231,0.000125,0.0010443864,0.0006435006,0.0,1.0,0.0
1.5.10.16.2,61487,"Crane in UMC  SMM01/02",7112,"CCGTD1_IPS",WBS,"61465",,,,100,Complete,14/01/2017,12/12/2016,08/02/2018,01/01/2018,,,,,76,108,132,163,17,25,30,38,,,"CCGT D1_Integrated Programme Schedule;OEM (Engineering & Deliverables);GAS AND STEAM TURBINE AREA;GAS AND STEAM TURBINE BUILDING"
1.5.10.16.2-1,SI1SMM2-80,"QUOTATION STAGE CRANE SMM01/02 FOR UMC",7112,"CCGTD1_IPS",TT_Task,"61487",-,-,-,100,TK_Complete,13/02/2017,31/12/2016,19/03/2017,27/02/2017,"SI1SMM2-75 FS,SI-3062-17 FS","SI1SMM2-75,SI-3062-17","SI1SMM2-85 FS","SI1SMM2-85",80,111,85,119,18,25,19,27,2,,"CCGT D1_Integrated Programme Schedule;OEM (Engineering & Deliverables);GAS AND STEAM TURBINE AREA;GAS AND STEAM TURBINE BUILDING;Crane in UMC  SMM01/02",2,1,0.0000008281,0.001017294,0.0008138352,34,0.0,0.0002164474,0.0136986301,0.0030769231,0.00125,0.0026109661,0.0025740026,0.0762331839,0.0,0.0554015052
1.5.10.16.2-2,SI1SMM2-85,"ORDER PLACED CRANE SMM01/02 FOR UMC",7112,"CCGTD1_IPS",TT_Mile,"61487",-,-,-,100,TK_Complete,01/03/2017,28/02/2017,01/03/2017,28/02/2017,"SI1SMM2-80 FS","SI1SMM2-80","SI1SMM3-25 FS","SI1SMM3-25",83,119,83,119,19,27,19,27,3,,"CCGT D1_Integrated Programme Schedule;OEM (Engineering & Deliverables);GAS AND STEAM TURBINE AREA;GAS AND STEAM TURBINE BUILDING;Crane in UMC  SMM01/02",1,1,0.0000008281,0.0008138352,0.001017294,0,1.0,0.0000812387,0.0068493151,0.0030769231,0.00125,0.0020887728,0.0032175032,0.0,1.0,0.0
1.5.10.16.2-3,SI1SMM3-25,"FABRICATION DESIGN, MANUFACTURING, SHOP TEST CRANE SMM01, 02 FOR UMC",7112,"CCGTD1_IPS",TT_Task,"61487",-,-,-,100,TK_Complete,16/03/2017,01/03/2017,21/12/2017,30/11/2017,"SI1SMM2-85 FS","SI1SMM2-85","SI1SMM3-80 FS","SI1SMM3-80",85,119,125,158,19,27,29,37,3,,"CCGT D1_Integrated Programme Schedule;OEM (Engineering & Deliverables);GAS AND STEAM TURBINE AREA;GAS AND STEAM TURBINE BUILDING;Crane in UMC  SMM01/02",1,1,0.0000007453,0.0006103764,0.0012207528,280,1.0,0.0001503957,0.0068493151,0.0030769231,0.001125,0.0015665796,0.0038610039,0.6278026906,1.0,0.0283369572
1.5.10.16.2-4,SI1SMM2-60,"(DF) FINAL INPUT FOR MS3 CRANE SMM01/02 FOR UMC",7112,"CCGTD1_IPS",TT_FinMile,"61487",-,-,-,100,TK_Complete,31/03/2017,15/03/2017,31/03/2017,15/03/2017,"SI----2C00 FS","SI----2C00","SI1UMC2B60 FS,SI1SMM2-75 FS","SI1UMC2B60,SI1SMM2-75",87,121,87,121,20,28,20,28,3,,"CCGT D1_Integrated Programme Schedule;OEM (Engineering & Deliverables);GAS AND STEAM TURBINE AREA;GAS AND STEAM TURBINE BUILDING;Crane in UMC  SMM01/02",1,2,0.0000003312,0.003051882,0.0002034588,0,1.0,0.0000812387,0.0068493151,0.0061538462,0.0005,0.0078328982,0.0006435006,0.0,1.0,0.0
1.5.10.16.2-5,SI1SMM2-75,"CONTRACT REVIEW, PREPARATION RFQ CRANE SMM01/02 FOR UMC",7112,"CCGTD1_IPS",TT_Task,"61487",-,-,-,100,TK_Complete,14/01/2017,12/12/2016,12/02/2017,30/12/2016,"SI----2C00 FS,SI1SMM2-60 FS","SI----2C00,SI1SMM2-60","SI1SMM2-80 FS","SI1SMM2-80",76,108,80,111,17,25,18,25,1,,"CCGT D1_Integrated Programme Schedule;OEM (Engineering & Deliverables);GAS AND STEAM TURBINE AREA;GAS AND STEAM TURBINE BUILDING;Crane in UMC  SMM01/02",2,1,0.0000004968,0.0012207528,0.0004069176,29,1.0,0.0001531281,0.0136986301,0.0030769231,0.00075,0.0031331593,0.0012870013,0.0650224215,1.0,0.0294565372
1.5.10.16.2-6,SI1SMM3-80,"(RFS) READY FOR SHIPMENT CRANE SMM01/02 FOR UMC",7112,"CCGTD1_IPS",TT_FinMile,"61487",-,-,-,100,TK_Complete,20/12/2017,30/11/2017,20/12/2017,30/11/2017,"SI1SMM3-25 FS","SI1SMM3-25","SI1SMM4-27 FS","SI1SMM4-27",125,158,125,158,29,37,29,37,16,,"CCGT D1_Integrated Programme Schedule;OEM (Engineering & Deliverables);GAS AND STEAM TURBINE AREA;GAS AND STEAM TURBINE BUILDING;Crane in UMC  SMM01/02",1,1,0.0000005797,0.0004069176,0.0014242116,0,1.0,0.0000812387,0.0068493151,0.0030769231,0.000875,0.0010443864,0.0045045045,0.0,1.0,0.0
1.5.10.16.2-7,SI1SMM4-27,"TRANSPORT CRANE SMM01/02 FOR UMC",7112,"CCGTD1_IPS",TT_Task,"61487",-,-,-,100,TK_Complete,16/12/2017,13/12/2017,14/01/2018,01/01/2018,"SI1SMM3-80 FS","SI1SMM3-80","SI1SMM4-40 FS","SI1SMM4-40",124,160,128,163,29,37,30,38,16,,"CCGT D1_Integrated Programme Schedule;OEM (Engineering & Deliverables);GAS AND STEAM TURBINE AREA;GAS AND STEAM TURBINE BUILDING;Crane in UMC  SMM01/02",1,1,0.0000003312,0.0002034588,0.0016276704,29,1.0,0.0001503957,0.0068493151,0.0030769231,0.0005,0.0005221932,0.0051480051,0.0650224215,1.0,0.0283369572
1.5.10.16.2-8,SI1SMM4-40,"(OTD-OS) ON SITE CRANE SMM01/02 FOR UMC",7112,"CCGTD1_IPS",TT_FinMile,"61487",-,-,-,100,TK_Complete,08/02/2018,01/01/2018,08/02/2018,01/01/2018,"SI1SMM4-27 FS","SI1SMM4-27","","",132,163,132,163,30,38,30,38,18,,"CCGT D1_Integrated Programme Schedule;OEM (Engineering & Deliverables);GAS AND STEAM TURBINE AREA;GAS AND STEAM TURBINE BUILDING;Crane in UMC  SMM01/02",1,0,0.0,0.0,0.0018311292,0,1.0,0.0000812387,0.0068493151,0.0,0.0,0.0,0.0057915058,0.0,1.0,0.0
1.5.10.16.3,61486,"Steam Turbine Drain Skid MAL00Y",7112,"CCGTD1_IPS",WBS,"61465",,,,100,Complete,16/03/2017,02/03/2017,27/04/2018,27/04/2018,,,,,85,119,143,180,19,27,33,42,,,"CCGT D1_Integrated Programme Schedule;OEM (Engineering & Deliverables);GAS AND STEAM TURBINE AREA;GAS AND STEAM TURBINE BUILDING"
1.5.10.16.3-1,SI1MAL2-10,"DETAIL DESIGN MAL00Y MODULE",7112,"CCGTD1_IPS",TT_Task,"61486",-,-,-,100,TK_Complete,16/03/2017,02/03/2017,23/08/2017,27/07/2017,"SI1MAL2O79 FS","SI1MAL2O79","SI1MAL3-10 FS","SI1MAL3-10",85,119,108,140,19,27,25,32,3,,"CCGT D1_Integrated Programme Schedule;OEM (Engineering & Deliverables);GAS AND STEAM TURBINE AREA;GAS AND STEAM TURBINE BUILDING;Steam Turbine Drain Skid MAL00Y",1,1,0.0000003312,0.0008138352,0.0004069176,160,1.0,0.0001503957,0.0068493151,0.0030769231,0.0005,0.0020887728,0.0012870013,0.3587443946,1.0,0.0283369572
1.5.10.16.3-2,SI1MAL3-25,"MANUFACTURING MAL00Y MODULE",7112,"CCGTD1_IPS",TT_Task,"61486",-,-,-,100,TK_Complete,06/12/2017,05/11/2017,09/02/2018,15/03/2018,"SI1MA-4-57 FS,SI1MAL3-10 FS","SI1MA-4-57,SI1MAL3-10","SI1MAL4-42 FS","SI1MAL4-42",123,155,132,173,28,36,30,40,15,,"CCGT D1_Integrated Programme Schedule;OEM (Engineering & Deliverables);GAS AND STEAM TURBINE AREA;GAS AND STEAM TURBINE BUILDING;Steam Turbine Drain Skid MAL00Y",2,1,0.0000008281,0.0004069176,0.002034588,65,0.0,0.0003944326,0.0136986301,0.0030769231,0.00125,0.0010443864,0.0064350064,0.1457399103,0.0,0.1283305899
1.5.10.16.3-3,SI1MAL4-42,"TRANSPORT MAL00Y MODULE",7112,"CCGTD1_IPS",TT_Task,"61486",-,-,-,100,TK_Complete,15/04/2018,17/04/2018,27/04/2018,27/04/2018,"SI1MAL3-25 FS","SI1MAL3-25","SI1MAL4-44 FS","SI1MAL4-44",141,178,143,180,33,41,33,42,24,,"CCGT D1_Integrated Programme Schedule;OEM (Engineering & Deliverables);GAS AND STEAM TURBINE AREA;GAS AND STEAM TURBINE BUILDING;Steam Turbine Drain Skid MAL00Y",1,1,0.0000004554,0.0002034588,0.0022380468,12,1.0,0.0004171132,0.0068493151,0.0030769231,0.0006875,0.0005221932,0.0070785071,0.0269058296,1.0,0.1376239211
1.5.10.16.3-4,SI1MAL4-44,"(OTD-OS) ON SITE MAL00Y MODULE",7112,"CCGTD1_IPS",TT_FinMile,"61486",-,-,-,100,TK_Complete,27/04/2018,27/04/2018,27/04/2018,27/04/2018,"SI1MAL4-42 FS","SI1MAL4-42","","",143,180,143,180,33,42,33,42,26,,"CCGT D1_Integrated Programme Schedule;OEM (Engineering & Deliverables);GAS AND STEAM TURBINE AREA;GAS AND STEAM TURBINE BUILDING;Steam Turbine Drain Skid MAL00Y",1,0,0.0,0.0,0.0024415056,0,1.0,0.0000812387,0.0068493151,0.0,0.0,0.0,0.0077220077,0.0,1.0,0.0
1.5.10.16.3-5,SI1MAL3-10,"DELIVERY OF SKID FRAME STEEL, PIPING MATERIAL MAL00Y MODULE",7112,"CCGTD1_IPS",TT_Task,"61486",-,-,-,100,TK_Complete,11/09/2017,28/07/2017,06/12/2017,04/11/2017,"SI---P2J85 FS,SI1MAL2-10 FS","SI---P2J85,SI1MAL2-10","SI1MAL3-25 FS","SI1MAL3-25",110,141,123,155,25,32,28,36,11,,"CCGT D1_Integrated Programme Schedule;OEM (Engineering & Deliverables);GAS AND STEAM TURBINE AREA;GAS AND STEAM TURBINE BUILDING;Steam Turbine Drain Skid MAL00Y",2,1,0.0000007453,0.0006103764,0.0012207528,86,0.0,0.0002175275,0.0136986301,0.0030769231,0.001125,0.0015665796,0.0038610039,0.1928251121,0.0,0.0558440602
1.5.10.16.3-6,SI1MAL2O79,"(MS3) MAL00Y MODULE FINAL DIMENSIONS AND LOADS AVAILABLE UMC",7112,"CCGTD1_IPS",TT_FinMile,"61486",-,-,-,100,TK_Complete,31/03/2017,15/03/2017,31/03/2017,15/03/2017,"SI----2C00 FS","SI----2C00","SI1MAL2-10 FS","SI1MAL2-10",87,121,87,121,20,28,20,28,3,,"CCGT D1_Integrated Programme Schedule;OEM (Engineering & Deliverables);GAS AND STEAM TURBINE AREA;GAS AND STEAM TURBINE BUILDING;Steam Turbine Drain Skid MAL00Y",1,1,0.000000207,0.001017294,0.0002034588,0,1.0,0.0000812387,0.0068493151,0.0030769231,0.0003125,0.0026109661,0.0006435006,0.0,1.0,0.0
1.5.10.16.4,61485,"Cable Support System BZP",7112,"CCGTD1_IPS",WBS,"61465",,,,100,Complete,25/07/2017,30/06/2017,18/09/2017,24/08/2017,,,,,103,137,111,144,24,31,26,33,,,"CCGT D1_Integrated Programme Schedule;OEM (Engineering & Deliverables);GAS AND STEAM TURBINE AREA;GAS AND STEAM TURBINE BUILDING"
1.5.10.16.4-1,SI1BZP2K30,"DETAIL DESIGN CABLE SUPPORT SYSTEM STEEL PLATFOR UMC",7112,"CCGTD1_IPS",TT_Task,"61485",-,-,-,100,TK_Complete,25/07/2017,30/06/2017,18/09/2017,24/08/2017,"SI1UMC2G70 SS,SI1UMC2I70 SS,SI1UMC2E70 SS,SI1UMC2I97 SS,SI1UMC2J70 SS,SI1UMC2L70 SS,SI1UMC2I79 SS,SI1UMC2I109 SS,SI1PXB2-10 SS,SI1UMC2F70 SS,SI1UMC2I91 SS,SI1UMC2I85 SS,SI1UMC2I103 SS","SI1UMC2G70,SI1UMC2I70,SI1UMC2E70,SI1UMC2I97,SI1UMC2J70,SI1UMC2L70,SI1UMC2I79,SI1UMC2I109,SI1PXB2-10,SI1UMC2F70,SI1UMC2I91,SI1UMC2I85,SI1UMC2I103","","",103,137,111,144,24,31,26,33,9,,"CCGT D1_Integrated Programme Schedule;OEM (Engineering & Deliverables);GAS AND STEAM TURBINE AREA;GAS AND STEAM TURBINE BUILDING;Cable Support System BZP",13,0,0.0,0.0,0.0126144456,55,1.0,0.0017364929,0.0890410959,0.0,0.0,0.0,0.0398970399,0.1233183857,1.0,0.6782372567
1.5.10.16.5,61484,"Structure for Gas and Steam Turbine Building UMC - Module UMCL1Y",7112,"CCGTD1_IPS",WBS,"61465",,,,100,Complete,14/02/2017,06/02/2017,27/04/2018,27/04/2018,,,,,80,116,143,180,18,27,33,42,,,"CCGT D1_Integrated Programme Schedule;OEM (Engineering & Deliverables);GAS AND STEAM TURBINE AREA;GAS AND STEAM TURBINE BUILDING"
1.5.10.16.5-1,SI1UMC2O60,"(MS3) UMCL1Y MODULE PIPE RACK, FINAL DIMENSIONS AND LOADS AVAILABLE UMC",7112,"CCGTD1_IPS",TT_FinMile,"61484",-,-,-,100,TK_Complete,14/02/2017,06/02/2017,14/02/2017,06/02/2017,"SI----2C00 FS","SI----2C00","SI1UMC2Y10 FS","SI1UMC2Y10",80,116,80,116,18,27,18,27,2,,"CCGT D1_Integrated Programme Schedule;OEM (Engineering & Deliverables);GAS AND STEAM TURBINE AREA;GAS AND STEAM TURBINE BUILDING;Structure for Gas and Steam Turbine Building UMC - Module UMCL1Y",1,1,0.000000207,0.001017294,0.0002034588,0,1.0,0.0000812387,0.0068493151,0.0030769231,0.0003125,0.0026109661,0.0006435006,0.0,1.0,0.0
1.5.10.16.5-2,SI1UMC3Y25,"MANUFACTURING UMCL1Y MODULE PIPE RACK",7112,"CCGTD1_IPS",TT_Task,"61484",-,-,-,100,TK_Complete,21/11/2017,22/10/2017,08/02/2018,01/03/2018,"SI1UMC3Y10 FS,SI1UMC2Y10 FS","SI1UMC3Y10,SI1UMC2Y10","SI1UMC3H25# SS,SI1UMC4Y25 FS,SI1UMC3H25# FF","SI1UMC3H25#,SI1UMC4Y25,SI1UMC3H25#",120,153,132,171,28,35,30,40,14,,"CCGT D1_Integrated Programme Schedule;OEM (Engineering & Deliverables);GAS AND STEAM TURBINE AREA;GAS AND STEAM TURBINE BUILDING;Structure for Gas and Steam Turbine Building UMC - Module UMCL1Y",2,1,0.0000005797,0.0004069176,0.0014242116,79,0.0,0.0002760413,0.0136986301,0.0030769231,0.000875,0.0010443864,0.0045045045,0.1771300448,0.0,0.0798199761
1.5.10.16.5-3,SI1UMC4Y25,"TRANSPORT UMCL1Y MODULE PIPE RACK",7112,"CCGTD1_IPS",TT_Task,"61484",-,-,-,100,TK_Complete,15/04/2018,17/04/2018,27/04/2018,27/04/2018,"SI1UMC3Y25 FS","SI1UMC3Y25","SI1UMC4Y42 FS","SI1UMC4Y42",141,178,143,180,33,41,33,42,24,,"CCGT D1_Integrated Programme Schedule;OEM (Engineering & Deliverables);GAS AND STEAM TURBINE AREA;GAS AND STEAM TURBINE BUILDING;Structure for Gas and Steam Turbine Building UMC - Module UMCL1Y",1,1,0.0000003312,0.0002034588,0.0016276704,12,1.0,0.0003162753,0.0068493151,0.0030769231,0.0005,0.0005221932,0.0051480051,0.0269058296,1.0,0.0963057833
1.5.10.16.5-4,SI1UMC4Y42,"(OTD-OS) ON SITE UMCL1Y MODULE PIPE RACK",7112,"CCGTD1_IPS",TT_FinMile,"61484",-,-,-,100,TK_Complete,27/04/2018,27/04/2018,27/04/2018,27/04/2018,"SI1UMC4Y25 FS","SI1UMC4Y25","","",143,180,143,180,33,42,33,42,26,,"CCGT D1_Integrated Programme Schedule;OEM (Engineering & Deliverables);GAS AND STEAM TURBINE AREA;GAS AND STEAM TURBINE BUILDING;Structure for Gas and Steam Turbine Building UMC - Module UMCL1Y",1,0,0.0,0.0,0.0018311292,0,1.0,0.0000812387,0.0068493151,0.0,0.0,0.0,0.0057915058,0.0,1.0,0.0
1.5.10.16.5-5,SI1UMC3Y10,"DELIVERY OF SKID FRAME STEEL, PIPING MATERIAL UMCL1Y MODULE PIPE RACK",7112,"CCGTD1_IPS",TT_Task,"61484",-,-,-,100,TK_Complete,09/08/2017,11/07/2017,19/11/2017,21/10/2017,"SI1UMC2Y10 FS,SI---P2J85 FS","SI1UMC2Y10,SI---P2J85","SI1UMC3Y25 FS","SI1UMC3Y25",106,138,120,153,24,32,28,35,10,,"CCGT D1_Integrated Programme Schedule;OEM (Engineering & Deliverables);GAS AND STEAM TURBINE AREA;GAS AND STEAM TURBINE BUILDING;Structure for Gas and Steam Turbine Building UMC - Module UMCL1Y",2,1,0.0000003726,0.0006103764,0.0012207528,102,1.0,0.0001631989,0.0136986301,0.0030769231,0.0005625,0.0015665796,0.0038610039,0.2286995516,1.0,0.0335830092
1.5.10.16.5-6,SI1UMC2Y10,"DETAIL DESIGN UMCL1Y MODULE PIPE RACK",7112,"CCGTD1_IPS",TT_Task,"61484",-,-,-,100,TK_Complete,14/02/2017,07/02/2017,17/07/2017,10/07/2017,"SI1UMC2O60 FS","SI1UMC2O60","SI1UMC3Y10 FS,SI1UMC3Y25 FS","SI1UMC3Y10,SI1UMC3Y25",80,116,102,138,18,27,23,32,2,,"CCGT D1_Integrated Programme Schedule;OEM (Engineering & Deliverables);GAS AND STEAM TURBINE AREA;GAS AND STEAM TURBINE BUILDING;Structure for Gas and Steam Turbine Building UMC - Module UMCL1Y",1,2,0.0000003312,0.0008138352,0.0004069176,153,1.0,0.0001503957,0.0068493151,0.0061538462,0.0005,0.0020887728,0.0012870013,0.3430493274,1.0,0.0283369572
1.5.10.16.6,61483,"Structure for Gas and Steam Turbine Building UMC - Module UMCM1Y",7112,"CCGTD1_IPS",WBS,"61465",,,,100,Complete,14/02/2017,13/02/2017,27/04/2018,29/05/2018,,,,,80,117,143,184,18,27,33,43,,,"CCGT D1_Integrated Programme Schedule;OEM (Engineering & Deliverables);GAS AND STEAM TURBINE AREA;GAS AND STEAM TURBINE BUILDING"
1.5.10.16.6-1,SI1UMC3X25,"MANUFACTURING UMCM1Y MODULE PIPE RACK",7112,"CCGTD1_IPS",TT_Task,"61483",-,-,-,100,TK_Complete,26/10/2017,02/10/2017,02/02/2018,26/04/2018,"SI1UMC3X10 FS","SI1UMC3X10","SI1UMC4X25 FS","SI1UMC4X25",117,150,131,179,27,35,30,41,13,,"CCGT D1_Integrated Programme Schedule;OEM (Engineering & Deliverables);GAS AND STEAM TURBINE AREA;GAS AND STEAM TURBINE BUILDING;Structure for Gas and Steam Turbine Building UMC - Module UMCM1Y",1,1,0.0000005797,0.0004069176,0.0014242116,99,0.0,0.0002655257,0.0068493151,0.0030769231,0.000875,0.0010443864,0.0045045045,0.2219730942,0.0,0.075511231
1.5.10.16.6-2,SI1UMC4X25,"TRANSPORT UMCM1Y MODULE PIPE RACK",7112,"CCGTD1_IPS",TT_Task,"61483",-,-,-,100,TK_Complete,15/04/2018,23/05/2018,27/04/2018,29/05/2018,"SI1UMC3X25 FS","SI1UMC3X25","SI1UMC4X42 FS","SI1UMC4X42",141,183,143,184,33,42,33,43,24,,"CCGT D1_Integrated Programme Schedule;OEM (Engineering & Deliverables);GAS AND STEAM TURBINE AREA;GAS AND STEAM TURBINE BUILDING;Structure for Gas and Steam Turbine Building UMC - Module UMCM1Y",1,1,0.0000003312,0.0002034588,0.0016276704,12,1.0,0.0003073623,0.0068493151,0.0030769231,0.0005,0.0005221932,0.0051480051,0.0269058296,1.0,0.0926536945
1.5.10.16.6-3,SI1UMC2O77,"(MS3) UMCM1Y MODULE PIPE RACK, FINAL DIMENSIONS AND LOADS AVAILABLE UMC",7112,"CCGTD1_IPS",TT_FinMile,"61483",-,-,-,100,TK_Complete,14/02/2017,13/02/2017,14/02/2017,13/02/2017,"SI----2C00 FS","SI----2C00","SI1UMC2X10 FS","SI1UMC2X10",80,117,80,117,18,27,18,27,2,,"CCGT D1_Integrated Programme Schedule;OEM (Engineering & Deliverables);GAS AND STEAM TURBINE AREA;GAS AND STEAM TURBINE BUILDING;Structure for Gas and Steam Turbine Building UMC - Module UMCM1Y",1,1,0.000000207,0.001017294,0.0002034588,0,1.0,0.0000812387,0.0068493151,0.0030769231,0.0003125,0.0026109661,0.0006435006,0.0,1.0,0.0
1.5.10.16.6-4,SI1UMC4X42,"(OTD-OS) ON SITE UMCM1Y MODULE PIPE RACK",7112,"CCGTD1_IPS",TT_FinMile,"61483",-,-,-,100,TK_Complete,27/04/2018,29/05/2018,27/04/2018,29/05/2018,"SI1UMC4X25 FS","SI1UMC4X25","","",143,184,143,184,33,43,33,43,26,,"CCGT D1_Integrated Programme Schedule;OEM (Engineering & Deliverables);GAS AND STEAM TURBINE AREA;GAS AND STEAM TURBINE BUILDING;Structure for Gas and Steam Turbine Building UMC - Module UMCM1Y",1,0,0.0,0.0,0.0018311292,0,1.0,0.0000812387,0.0068493151,0.0,0.0,0.0,0.0057915058,0.0,1.0,0.0
1.5.10.16.6-5,SI1UMC3X10,"DELIVERY OF SKID FRAME STEEL, PIPING MATERIAL UMCM1Y MODULE PIPE RACK",7112,"CCGTD1_IPS",TT_Task,"61483",-,-,-,100,TK_Complete,29/09/2017,29/08/2017,13/12/2017,12/11/2017,"SI---P2J85 FS,SI1UMC2X10 FS","SI---P2J85,SI1UMC2X10","SI1UMC3X25 FS","SI1UMC3X25",113,145,124,156,26,33,28,36,12,,"CCGT D1_Integrated Programme Schedule;OEM (Engineering & Deliverables);GAS AND STEAM TURBINE AREA;GAS AND STEAM TURBINE BUILDING;Structure for Gas and Steam Turbine Building UMC - Module UMCM1Y",2,1,0.0000007453,0.0006103764,0.0012207528,75,1.0,0.000216468,0.0136986301,0.0030769231,0.001125,0.0015665796,0.0038610039,0.168161435,1.0,0.0554099285
1.5.10.16.6-6,SI1UMC2X10,"DETAIL DESIGN UMCM1Y MODULE PIPE RACK",7112,"CCGTD1_IPS",TT_Task,"61483",-,-,-,100,TK_Complete,01/03/2017,14/02/2017,12/09/2017,28/08/2017,"SI1UMC2O77 FS","SI1UMC2O77","SI1UMC3X10 FS","SI1UMC3X10",83,117,110,145,19,27,25,33,3,,"CCGT D1_Integrated Programme Schedule;OEM (Engineering & Deliverables);GAS AND STEAM TURBINE AREA;GAS AND STEAM TURBINE BUILDING;Structure for Gas and Steam Turbine Building UMC - Module UMCM1Y",1,1,0.0000003312,0.0008138352,0.0004069176,195,1.0,0.0001503957,0.0068493151,0.0030769231,0.0005,0.0020887728,0.0012870013,0.4372197309,1.0,0.0283369572
1.5.10.16.7,61482,"Steel Platforms UMC - Steel attached to Main Frame",7112,"CCGTD1_IPS",WBS,"61465",,,,100,Complete,25/08/2017,03/08/2017,06/06/2018,15/11/2018,,,,,108,141,149,208,25,33,34,48,,,"CCGT D1_Integrated Programme Schedule;OEM (Engineering & Deliverables);GAS AND STEAM TURBINE AREA;GAS AND STEAM TURBINE BUILDING"
1.5.10.16.7-1,SI1UMC2P60,"(MS3) STEEL ATTACHED TO MAIN FRAME, FINAL DIMENSIONS AND LOADS AVAILABLE UMC",7112,"CCGTD1_IPS",TT_FinMile,"61482",-,-,-,100,TK_Complete,25/08/2017,03/08/2017,25/08/2017,03/08/2017,"SI----2C00 FS","SI----2C00","SI1UMC2P70 FS","SI1UMC2P70",108,141,108,141,25,33,25,33,10,,"CCGT D1_Integrated Programme Schedule;OEM (Engineering & Deliverables);GAS AND STEAM TURBINE AREA;GAS AND STEAM TURBINE BUILDING;Steel Platforms UMC - Steel attached to Main Frame",1,1,0.0000001242,0.0006103764,0.0002034588,0,1.0,0.0000812387,0.0068493151,0.0030769231,0.0001875,0.0015665796,0.0006435006,0.0,1.0,0.0
1.5.10.16.7-2,SI1UMC2P75,"(F) DETAIL DESIGN STEEL ATTACHED TO MAIN FRAME DWGS WITH CONTRACTOR UMC",7112,"CCGTD1_IPS",TT_Mile,"61482",-,-,-,100,TK_Complete,26/01/2018,20/01/2018,26/01/2018,20/01/2018,"SI1UMC2P70 FS","SI1UMC2P70","SI1UMC3P25 FS","SI1UMC3P25",130,166,130,166,30,38,30,38,17,,"CCGT D1_Integrated Programme Schedule;OEM (Engineering & Deliverables);GAS AND STEAM TURBINE AREA;GAS AND STEAM TURBINE BUILDING;Steel Platforms UMC - Steel attached to Main Frame",1,1,0.0000001242,0.0002034588,0.0006103764,0,1.0,0.0000812387,0.0068493151,0.0030769231,0.0001875,0.0005221932,0.0019305019,0.0,1.0,0.0
1.5.10.16.7-3,SI1UMC3P25,"FABRICATION DESIGN, FABRICATION, TRANSPORT, ON SITE STEEL ATTACHED TO MAIN FRAME",7112,"CCGTD1_IPS",TT_Task,"61482",-,-,-,100,TK_Complete,26/01/2018,20/01/2018,06/06/2018,27/06/2018,"SI1UMC2P75 FS","SI1UMC2P75","SI1UMC3H25# FF,SI1UMC3H25# SS","SI1UMC3H25#,SI1UMC3H25#",130,166,149,188,30,38,34,44,17,,"CCGT D1_Integrated Programme Schedule;OEM (Engineering & Deliverables);GAS AND STEAM TURBINE AREA;GAS AND STEAM TURBINE BUILDING;Steel Platforms UMC - Steel attached to Main Frame",1,0,0.0,0.0,0.0008138352,131,0.0,0.0001503957,0.0068493151,0.0,0.0,0.0,0.0025740026,0.2937219731,0.0,0.0283369572
1.5.10.16.7-4,SI1UMC2P70,"DETAIL DESIGN / CHECKER STEEL ATTACHED TO MAIN FRAME",7112,"CCGTD1_IPS",TT_Task,"61482",-,-,-,100,TK_Complete,26/08/2017,04/08/2017,20/10/2017,14/11/2017,"SI1UMC2P60 FS","SI1UMC2P60","SI1UMC2P75 FS","SI1UMC2P75",108,142,116,156,25,33,27,36,10,,"CCGT D1_Integrated Programme Schedule;OEM (Engineering & Deliverables);GAS AND STEAM TURBINE AREA;GAS AND STEAM TURBINE BUILDING;Steel Platforms UMC - Steel attached to Main Frame",1,1,0.0000001656,0.0004069176,0.0004069176,55,0.0,0.0001503957,0.0068493151,0.0030769231,0.00025,0.0010443864,0.0012870013,0.1233183857,0.0,0.0283369572
1.5.10.16.8,61481,"Steel Platforms UMC - Bus Duct (IPB) Supporting Structure",7112,"CCGTD1_IPS",WBS,"61465",,,,100,Complete,25/06/2017,01/06/2017,06/06/2018,15/11/2018,,,,,99,132,149,208,23,31,34,48,,,"CCGT D1_Integrated Programme Schedule;OEM (Engineering & Deliverables);GAS AND STEAM TURBINE AREA;GAS AND STEAM TURBINE BUILDING"
1.5.10.16.8-1,SI1UMC3I27,"FABRICATION DESIGN, FABRICATION, TRANSPORT, ON SITE STEEL PLATFORM BUS DUCT SUPPORT UMC",7112,"CCGTD1_IPS",TT_Task,"61481",-,-,-,100,TK_Complete,26/01/2018,20/01/2018,06/06/2018,15/11/2018,"SI1UMC2I81 FS","SI1UMC2I81","SI1UMC3H25# FF,SI1UMC3H25# SS","SI1UMC3H25#,SI1UMC3H25#",130,166,149,208,30,38,34,48,17,,"CCGT D1_Integrated Programme Schedule;OEM (Engineering & Deliverables);GAS AND STEAM TURBINE AREA;GAS AND STEAM TURBINE BUILDING;Steel Platforms UMC - Bus Duct (IPB) Supporting Structure",1,0,0.0,0.0,0.0006103764,131,0.0,0.0001503957,0.0068493151,0.0,0.0,0.0,0.0019305019,0.2937219731,0.0,0.0283369572
1.5.10.16.8-2,SI1UMC2I79,"DETAIL DESIGN / CHECKER STEEL PLATFORM BUS DUCT SUPPORT UMC",7112,"CCGTD1_IPS",TT_Task,"61481",-,-,-,100,TK_Complete,26/06/2017,02/06/2017,16/09/2017,14/11/2017,"SI1UMC2I77 FS","SI1UMC2I77","SI1BZP2K30 SS,SI1UMC2I81 FS","SI1BZP2K30,SI1UMC2I81",99,133,111,156,23,31,26,36,8,,"CCGT D1_Integrated Programme Schedule;OEM (Engineering & Deliverables);GAS AND STEAM TURBINE AREA;GAS AND STEAM TURBINE BUILDING;Steel Platforms UMC - Bus Duct (IPB) Supporting Structure",1,2,0.0000001242,0.0006103764,0.0002034588,82,0.0,0.0001503957,0.0068493151,0.0061538462,0.0001875,0.0015665796,0.0006435006,0.1838565022,0.0,0.0283369572
1.5.10.16.8-3,SI1UMC2I77,"(MS3) STEEL PLATFORM BUS DUCT SUPPORT FINAL DIMENSIONS AND LOADS AVAILABLE UMC",7112,"CCGTD1_IPS",TT_FinMile,"61481",-,-,-,100,TK_Complete,25/06/2017,01/06/2017,25/06/2017,01/06/2017,"","","SI1UMC2I79 FS","SI1UMC2I79",99,132,99,132,23,31,23,31,7,,"CCGT D1_Integrated Programme Schedule;OEM (Engineering & Deliverables);GAS AND STEAM TURBINE AREA;GAS AND STEAM TURBINE BUILDING;Steel Platforms UMC - Bus Duct (IPB) Supporting Structure",0,1,0.0,0.0008138352,0.0,0,1.0,0.0000812387,0.0,0.0030769231,0.0,0.0020887728,0.0,0.0,1.0,0.0
1.5.10.16.8-4,SI1UMC2I81,"(F) DETAIL DESIGN STEEL PLATFORM BUS DUCT SUPPORT DWGS WITH CONTRACTOR UMC",7112,"CCGTD1_IPS",TT_Mile,"61481",-,-,-,100,TK_Complete,26/01/2018,20/01/2018,26/01/2018,20/01/2018,"SI1UMC2I79 FS","SI1UMC2I79","SI1UMC3I27 FS","SI1UMC3I27",130,166,130,166,30,38,30,38,17,,"CCGT D1_Integrated Programme Schedule;OEM (Engineering & Deliverables);GAS AND STEAM TURBINE AREA;GAS AND STEAM TURBINE BUILDING;Steel Platforms UMC - Bus Duct (IPB) Supporting Structure",1,1,0.0000000828,0.0002034588,0.0004069176,0,1.0,0.0000812387,0.0068493151,0.0030769231,0.000125,0.0005221932,0.0012870013,0.0,1.0,0.0
1.5.10.16.9,61480,"Steel Platforms UMC - LP By-pass Platform",7112,"CCGTD1_IPS",WBS,"61465",,,,100,Complete,25/06/2017,01/06/2017,03/02/2018,30/08/2018,,,,,99,132,131,197,23,31,30,46,,,"CCGT D1_Integrated Programme Schedule;OEM (Engineering & Deliverables);GAS AND STEAM TURBINE AREA;GAS AND STEAM TURBINE BUILDING"
1.5.10.16.9-1,SI1UMC2I95,"(MS3) STEEL PLATFORM LP BY-PASS FINAL DIMENSIONS AND LOADS AVAILABLE UMC",7112,"CCGTD1_IPS",TT_FinMile,"61480",-,-,-,100,TK_Complete,25/06/2017,01/06/2017,25/06/2017,01/06/2017,"","","SI1UMC2I97 FS","SI1UMC2I97",99,132,99,132,23,31,23,31,7,,"CCGT D1_Integrated Programme Schedule;OEM (Engineering & Deliverables);GAS AND STEAM TURBINE AREA;GAS AND STEAM TURBINE BUILDING;Steel Platforms UMC - LP By-pass Platform",0,1,0.0,0.0008138352,0.0,0,1.0,0.0000812387,0.0,0.0030769231,0.0,0.0020887728,0.0,0.0,1.0,0.0
1.5.10.16.9-2,SI1UMC2I99,"(F) DETAIL DESIGN STEEL PLATFORM LP BY-PASS DWGS WITH CONTRACTOR UMC",7112,"CCGTD1_IPS",TT_Mile,"61480",-,-,-,100,TK_Complete,21/11/2017,21/11/2017,21/11/2017,21/11/2017,"SI1UMC2I97 FS","SI1UMC2I97","SI1UMC3I33 FS","SI1UMC3I33",120,157,120,157,28,36,28,36,14,,"CCGT D1_Integrated Programme Schedule;OEM (Engineering & Deliverables);GAS AND STEAM TURBINE AREA;GAS AND STEAM TURBINE BUILDING;Steel Platforms UMC - LP By-pass Platform",1,1,0.0000000828,0.0002034588,0.0004069176,0,1.0,0.0000812387,0.0068493151,0.0030769231,0.000125,0.0005221932,0.0012870013,0.0,1.0,0.0
1.5.10.16.9-3,SI1UMC3I33,"FABRICATION DESIGN, FABRICATION, TRANSPORT, ON SITE STEEL PLATFORM LP BY-PASS UMC",7112,"CCGTD1_IPS",TT_Task,"61480",-,-,-,100,TK_Complete,26/11/2017,21/11/2017,03/02/2018,30/08/2018,"SI1UMC2I99 FS","SI1UMC2I99","SI1UMC3H25# SS,SI1UMC3H25# FF","SI1UMC3H25#,SI1UMC3H25#",121,157,131,197,28,36,30,46,15,,"CCGT D1_Integrated Programme Schedule;OEM (Engineering & Deliverables);GAS AND STEAM TURBINE AREA;GAS AND STEAM TURBINE BUILDING;Steel Platforms UMC - LP By-pass Platform",1,0,0.0,0.0,0.0006103764,69,0.0,0.0001503957,0.0068493151,0.0,0.0,0.0,0.0019305019,0.1547085202,0.0,0.0283369572
1.5.10.16.9-4,SI1UMC2I97,"DETAIL DESIGN / CHECKER STEEL PLATFORM LP BY-PASS UMC",7112,"CCGTD1_IPS",TT_Task,"61480",-,-,-,100,TK_Complete,26/06/2017,02/06/2017,17/08/2017,26/07/2017,"SI1UMC2I95 FS","SI1UMC2I95","SI1BZP2K30 SS,SI1UMC2I99 FS","SI1BZP2K30,SI1UMC2I99",99,133,107,140,23,31,25,32,8,,"CCGT D1_Integrated Programme Schedule;OEM (Engineering & Deliverables);GAS AND STEAM TURBINE AREA;GAS AND STEAM TURBINE BUILDING;Steel Platforms UMC - LP By-pass Platform",1,2,0.0000001242,0.0006103764,0.0002034588,52,0.4,0.0001503957,0.0068493151,0.0061538462,0.0001875,0.0015665796,0.0006435006,0.1165919283,0.4,0.0283369572
1.5.10.16.10,61479,"Steel Platforms UMC - Pipe Access Near CEP",7112,"CCGTD1_IPS",WBS,"61465",,,,100,Complete,31/03/2017,15/03/2017,09/03/2018,30/08/2018,,,,,87,121,136,197,20,28,31,46,,,"CCGT D1_Integrated Programme Schedule;OEM (Engineering & Deliverables);GAS AND STEAM TURBINE AREA;GAS AND STEAM TURBINE BUILDING"
1.5.10.16.10-1,SI1UMC2I89,"(MS3) STEEL PLATFORM PIPE ACCESS NEAR CEP FINAL DIMENSIONS AND LOADS AVAILABLE UMC",7112,"CCGTD1_IPS",TT_FinMile,"61479",-,-,-,100,TK_Complete,31/03/2017,15/03/2017,31/03/2017,15/03/2017,"","","SI1UMC2I91 FS","SI1UMC2I91",87,121,87,121,20,28,20,28,3,,"CCGT D1_Integrated Programme Schedule;OEM (Engineering & Deliverables);GAS AND STEAM TURBINE AREA;GAS AND STEAM TURBINE BUILDING;Steel Platforms UMC - Pipe Access Near CEP",0,1,0.0,0.0008138352,0.0,0,1.0,0.0000812387,0.0,0.0030769231,0.0,0.0020887728,0.0,0.0,1.0,0.0
1.5.10.16.10-2,SI1UMC2I93,"(F) DETAIL DESIGN STEEL PLATFORM PIPE ACCESS NEAR CEP DWGS WITH CONTRACTOR UMC",7112,"CCGTD1_IPS",TT_Mile,"61479",-,-,-,100,TK_Complete,26/11/2017,21/11/2017,26/11/2017,21/11/2017,"SI1UMC2I91 FS","SI1UMC2I91","SI1UMC3I31 FS","SI1UMC3I31",121,157,121,157,28,36,28,36,14,,"CCGT D1_Integrated Programme Schedule;OEM (Engineering & Deliverables);GAS AND STEAM TURBINE AREA;GAS AND STEAM TURBINE BUILDING;Steel Platforms UMC - Pipe Access Near CEP",1,1,0.0000000828,0.0002034588,0.0004069176,0,1.0,0.0000812387,0.0068493151,0.0030769231,0.000125,0.0005221932,0.0012870013,0.0,1.0,0.0
1.5.10.16.10-3,SI1UMC3I31,"FABRICATION DESIGN, FABRICATION, TRANSPORT, ON SITE STEEL PLATFORM PIPE ACCESS NEAR CEP UMC",7112,"CCGTD1_IPS",TT_Task,"61479",-,-,-,100,TK_Complete,26/11/2017,21/11/2017,09/03/2018,30/08/2018,"SI1UMC2I93 FS","SI1UMC2I93","SI1UMC3H25# FF,SI1UMC3H25# SS","SI1UMC3H25#,SI1UMC3H25#",121,157,136,197,28,36,31,46,15,,"CCGT D1_Integrated Programme Schedule;OEM (Engineering & Deliverables);GAS AND STEAM TURBINE AREA;GAS AND STEAM TURBINE BUILDING;Steel Platforms UMC - Pipe Access Near CEP",1,0,0.0,0.0,0.0006103764,103,0.0,0.0001503957,0.0068493151,0.0,0.0,0.0,0.0019305019,0.230941704,0.0,0.0283369572
1.5.10.16.10-4,SI1UMC2I91,"DETAIL DESIGN / CHECKER STEEL PLATFORM PIPE ACCESS NEAR CEP UMC",7112,"CCGTD1_IPS",TT_Task,"61479",-,-,-,100,TK_Complete,01/04/2017,16/03/2017,02/06/2017,12/05/2017,"SI1UMC2I89 FS","SI1UMC2I89","SI1UMC2I93 FS,SI1BZP2K30 SS","SI1UMC2I93,SI1BZP2K30",87,121,96,130,20,28,22,30,4,,"CCGT D1_Integrated Programme Schedule;OEM (Engineering & Deliverables);GAS AND STEAM TURBINE AREA;GAS AND STEAM TURBINE BUILDING;Steel Platforms UMC - Pipe Access Near CEP",1,2,0.0000001242,0.0006103764,0.0002034588,62,1.0,0.0001503957,0.0068493151,0.0061538462,0.0001875,0.0015665796,0.0006435006,0.1390134529,1.0,0.0283369572
1.5.10.16.11,61478,"Steel Platforms UMC - Bearing Access Platform",7112,"CCGTD1_IPS",WBS,"61465",,,,100,Complete,25/06/2017,01/06/2017,05/06/2018,15/11/2018,,,,,99,132,148,208,23,31,34,48,,,"CCGT D1_Integrated Programme Schedule;OEM (Engineering & Deliverables);GAS AND STEAM TURBINE AREA;GAS AND STEAM TURBINE BUILDING"
1.5.10.16.11-1,SI1UMC2I60,"(MS3) STEEL PLATFORM BEARING ACCESS FINAL DIMENSIONS AND LOADS AVAILABLE UMC",7112,"CCGTD1_IPS",TT_FinMile,"61478",-,-,-,100,TK_Complete,25/06/2017,01/06/2017,25/06/2017,01/06/2017,"","","SI1UMC2I70 FS","SI1UMC2I70",99,132,99,132,23,31,23,31,7,,"CCGT D1_Integrated Programme Schedule;OEM (Engineering & Deliverables);GAS AND STEAM TURBINE AREA;GAS AND STEAM TURBINE BUILDING;Steel Platforms UMC - Bearing Access Platform",0,1,0.0,0.0008138352,0.0,0,1.0,0.0000812387,0.0,0.0030769231,0.0,0.0020887728,0.0,0.0,1.0,0.0
1.5.10.16.11-2,SI1UMC2I75,"(F) DETAIL DESIGN STEEL PLATFORM BEARING ACCESS DWGS WITH CONTRACTOR UMC",7112,"CCGTD1_IPS",TT_Mile,"61478",-,-,-,100,TK_Complete,26/01/2018,20/01/2018,26/01/2018,20/01/2018,"SI1UMC2I70 FS","SI1UMC2I70","SI1UMC3I25 FS","SI1UMC3I25",130,166,130,166,30,38,30,38,17,,"CCGT D1_Integrated Programme Schedule;OEM (Engineering & Deliverables);GAS AND STEAM TURBINE AREA;GAS AND STEAM TURBINE BUILDING;Steel Platforms UMC - Bearing Access Platform",1,1,0.0000000828,0.0002034588,0.0004069176,0,1.0,0.0000812387,0.0068493151,0.0030769231,0.000125,0.0005221932,0.0012870013,0.0,1.0,0.0
1.5.10.16.11-3,SI1UMC3I25,"FABRICATION DESIGN, FABRICATION, TRANSPORT, ON SITE STEEL PLATFORM BEARING ACCESS UMC",7112,"CCGTD1_IPS",TT_Task,"61478",-,-,-,100,TK_Complete,26/01/2018,20/01/2018,05/06/2018,15/11/2018,"SI1UMC2I75 FS","SI1UMC2I75","SI1UMC3H25# SS,SI1UMC3H25# FF","SI1UMC3H25#,SI1UMC3H25#",130,166,148,208,30,38,34,48,17,,"CCGT D1_Integrated Programme Schedule;OEM (Engineering & Deliverables);GAS AND STEAM TURBINE AREA;GAS AND STEAM TURBINE BUILDING;Steel Platforms UMC - Bearing Access Platform",1,0,0.0,0.0,0.0006103764,130,0.0,0.0001503957,0.0068493151,0.0,0.0,0.0,0.0019305019,0.2914798206,0.0,0.0283369572
1.5.10.16.11-4,SI1UMC2I70,"DETAIL DESIGN / CHECKER STEEL PLATFORM BEARING ACCESS UMC",7112,"CCGTD1_IPS",TT_Task,"61478",-,-,-,100,TK_Complete,26/06/2017,02/06/2017,16/09/2017,15/09/2017,"SI1UMC2I60 FS","SI1UMC2I60","SI1BZP2K30 SS,SI1UMC2I75 FS","SI1BZP2K30,SI1UMC2I75",99,133,111,148,23,31,26,34,8,,"CCGT D1_Integrated Programme Schedule;OEM (Engineering & Deliverables);GAS AND STEAM TURBINE AREA;GAS AND STEAM TURBINE BUILDING;Steel Platforms UMC - Bearing Access Platform",1,2,0.0000001242,0.0006103764,0.0002034588,82,0.0,0.0001503957,0.0068493151,0.0061538462,0.0001875,0.0015665796,0.0006435006,0.1838565022,0.0,0.0283369572
1.5.10.16.12,61477,"Steel Platforms UMC - Miscellaneous Platform",7112,"CCGTD1_IPS",WBS,"61465",,,,100,Complete,02/07/2017,08/06/2017,10/07/2018,15/11/2018,,,,,100,133,153,208,23,31,35,48,,,"CCGT D1_Integrated Programme Schedule;OEM (Engineering & Deliverables);GAS AND STEAM TURBINE AREA;GAS AND STEAM TURBINE BUILDING"
1.5.10.16.12-1,SI1UMC2I107,"(MS3) STEEL MISC. PLATFORM FINAL DIMENSIONS AND LOADS AVAILABLE UMC",7112,"CCGTD1_IPS",TT_FinMile,"61477",-,-,-,100,TK_Complete,02/07/2017,08/06/2017,02/07/2017,08/06/2017,"","","SI1UMC2I109 FS","SI1UMC2I109",100,133,100,133,23,31,23,31,8,,"CCGT D1_Integrated Programme Schedule;OEM (Engineering & Deliverables);GAS AND STEAM TURBINE AREA;GAS AND STEAM TURBINE BUILDING;Steel Platforms UMC - Miscellaneous Platform",0,1,0.0,0.0008138352,0.0,0,1.0,0.0000812387,0.0,0.0030769231,0.0,0.0020887728,0.0,0.0,1.0,0.0
1.5.10.16.12-2,SI1UMC2I111,"(F) DETAIL DESIGN STEEL MISC. PLATFORM DWGS WITH CONTRACTOR UMC",7112,"CCGTD1_IPS",TT_Mile,"61477",-,-,-,100,TK_Complete,02/03/2018,20/01/2018,02/03/2018,20/01/2018,"SI1UMC2I109 FS","SI1UMC2I109","SI1UMC3I37 FS","SI1UMC3I37",135,166,135,166,31,38,31,38,21,,"CCGT D1_Integrated Programme Schedule;OEM (Engineering & Deliverables);GAS AND STEAM TURBINE AREA;GAS AND STEAM TURBINE BUILDING;Steel Platforms UMC - Miscellaneous Platform",1,1,0.0000000828,0.0002034588,0.0004069176,0,1.0,0.0000812387,0.0068493151,0.0030769231,0.000125,0.0005221932,0.0012870013,0.0,1.0,0.0
1.5.10.16.12-3,SI1UMC3I37,"FABRICATION DESIGN, FABRICATION, TRANSPORT, ON SITE STEEL MISC. PLATFORM UMC",7112,"CCGTD1_IPS",TT_Task,"61477",-,-,-,100,TK_Complete,02/03/2018,20/01/2018,10/07/2018,15/11/2018,"SI1UMC2I111 FS","SI1UMC2I111","SI1UMC3H25# SS,SI1UMC3H25# FF","SI1UMC3H25#,SI1UMC3H25#",135,166,153,208,31,38,35,48,21,,"CCGT D1_Integrated Programme Schedule;OEM (Engineering & Deliverables);GAS AND STEAM TURBINE AREA;GAS AND STEAM TURBINE BUILDING;Steel Platforms UMC - Miscellaneous Platform",1,0,0.0,0.0,0.0006103764,130,0.0,0.0001503957,0.0068493151,0.0,0.0,0.0,0.0019305019,0.2914798206,0.0,0.0283369572
1.5.10.16.12-4,SI1UMC2I109,"DETAIL DESIGN / CHECKER STEEL MISC. PLATFORM UMC",7112,"CCGTD1_IPS",TT_Task,"61477",-,-,-,100,TK_Complete,03/07/2017,09/06/2017,16/09/2017,04/01/2018,"SI1UMC2I107 FS","SI1UMC2I107","SI1BZP2K30 SS,SI1UMC2I111 FS","SI1BZP2K30,SI1UMC2I111",100,134,111,163,23,31,26,38,9,,"CCGT D1_Integrated Programme Schedule;OEM (Engineering & Deliverables);GAS AND STEAM TURBINE AREA;GAS AND STEAM TURBINE BUILDING;Steel Platforms UMC - Miscellaneous Platform",1,2,0.0000001242,0.0006103764,0.0002034588,75,0.0,0.0001503957,0.0068493151,0.0061538462,0.0001875,0.0015665796,0.0006435006,0.168161435,0.0,0.0283369572
1.5.10.16.13,61476,"Steel Platforms UMC - Platform Over TG Foundation",7112,"CCGTD1_IPS",WBS,"61465",,,,100,Complete,02/07/2017,08/06/2017,06/06/2018,15/11/2018,,,,,100,133,149,208,23,31,34,48,,,"CCGT D1_Integrated Programme Schedule;OEM (Engineering & Deliverables);GAS AND STEAM TURBINE AREA;GAS AND STEAM TURBINE BUILDING"
1.5.10.16.13-1,SI1UMC2I101,"(MS3) STEEL PLATFORM OVER TG FDN FINAL DIMENSIONS AND LOADS AVAILABLE UMC",7112,"CCGTD1_IPS",TT_FinMile,"61476",-,-,-,100,TK_Complete,02/07/2017,08/06/2017,02/07/2017,08/06/2017,"","","SI1UMC2I103 FS","SI1UMC2I103",100,133,100,133,23,31,23,31,8,,"CCGT D1_Integrated Programme Schedule;OEM (Engineering & Deliverables);GAS AND STEAM TURBINE AREA;GAS AND STEAM TURBINE BUILDING;Steel Platforms UMC - Platform Over TG Foundation",0,1,0.0,0.0008138352,0.0,0,1.0,0.0000812387,0.0,0.0030769231,0.0,0.0020887728,0.0,0.0,1.0,0.0
1.5.10.16.13-2,SI1UMC2I105,"(F) DETAIL DESIGN STEEL PLATFORM OVER TG FDN DWGS WITH CONTRACTOR UMC",7112,"CCGTD1_IPS",TT_Mile,"61476",-,-,-,100,TK_Complete,26/01/2018,20/01/2018,26/01/2018,20/01/2018,"SI1UMC2I103 FS","SI1UMC2I103","SI1UMC3I35 FS","SI1UMC3I35",130,166,130,166,30,38,30,38,17,,"CCGT D1_Integrated Programme Schedule;OEM (Engineering & Deliverables);GAS AND STEAM TURBINE AREA;GAS AND STEAM TURBINE BUILDING;Steel Platforms UMC - Platform Over TG Foundation",1,1,0.0000000828,0.0002034588,0.0004069176,0,1.0,0.0000812387,0.0068493151,0.0030769231,0.000125,0.0005221932,0.0012870013,0.0,1.0,0.0
1.5.10.16.13-3,SI1UMC3I35,"FABRICATION DESIGN, FABRICATION, TRANSPORT, ON SITE STEEL PLATFORM OVER TG FDN UMC",7112,"CCGTD1_IPS",TT_Task,"61476",-,-,-,100,TK_Complete,26/01/2018,20/01/2018,06/06/2018,15/11/2018,"SI1UMC2I105 FS","SI1UMC2I105","SI1UMC3H25# FF,SI1UMC3H25# SS","SI1UMC3H25#,SI1UMC3H25#",130,166,149,208,30,38,34,48,17,,"CCGT D1_Integrated Programme Schedule;OEM (Engineering & Deliverables);GAS AND STEAM TURBINE AREA;GAS AND STEAM TURBINE BUILDING;Steel Platforms UMC - Platform Over TG Foundation",1,0,0.0,0.0,0.0006103764,131,0.0,0.0001503957,0.0068493151,0.0,0.0,0.0,0.0019305019,0.2937219731,0.0,0.0283369572
1.5.10.16.13-4,SI1UMC2I103,"DETAIL DESIGN / CHECKER STEEL PLATFORM OVER TG FDN UMC",7112,"CCGTD1_IPS",TT_Task,"61476",-,-,-,100,TK_Complete,03/07/2017,09/06/2017,16/09/2017,15/09/2017,"SI1UMC2I101 FS","SI1UMC2I101","SI1UMC2I105 FS,SI1BZP2K30 SS","SI1UMC2I105,SI1BZP2K30",100,134,111,148,23,31,26,34,9,,"CCGT D1_Integrated Programme Schedule;OEM (Engineering & Deliverables);GAS AND STEAM TURBINE AREA;GAS AND STEAM TURBINE BUILDING;Steel Platforms UMC - Platform Over TG Foundation",1,2,0.0000001242,0.0006103764,0.0002034588,75,0.0,0.0001503957,0.0068493151,0.0061538462,0.0001875,0.0015665796,0.0006435006,0.168161435,0.0,0.0283369572
1.5.10.16.14,61475,"Steel Platforms UMC - Condenser Manhole Access Platform",7112,"CCGTD1_IPS",WBS,"61465",,,,100,Complete,25/06/2017,01/06/2017,05/04/2018,27/06/2018,,,,,99,132,140,188,23,31,32,44,,,"CCGT D1_Integrated Programme Schedule;OEM (Engineering & Deliverables);GAS AND STEAM TURBINE AREA;GAS AND STEAM TURBINE BUILDING"
1.5.10.16.14-1,SI1UMC2I83,"(MS3) STEEL PLATFORM CONDENSER MANHOLE ACCESS FINAL DIMENSIONS AND LOADS AVAILABLE UMC",7112,"CCGTD1_IPS",TT_FinMile,"61475",-,-,-,100,TK_Complete,25/06/2017,01/06/2017,25/06/2017,01/06/2017,"","","SI1UMC2I85 FS","SI1UMC2I85",99,132,99,132,23,31,23,31,7,,"CCGT D1_Integrated Programme Schedule;OEM (Engineering & Deliverables);GAS AND STEAM TURBINE AREA;GAS AND STEAM TURBINE BUILDING;Steel Platforms UMC - Condenser Manhole Access Platform",0,1,0.0,0.0008138352,0.0,0,1.0,0.0000812387,0.0,0.0030769231,0.0,0.0020887728,0.0,0.0,1.0,0.0
1.5.10.16.14-2,SI1UMC2I87,"(F) DETAIL DESIGN STEEL PLATFORM CONDENSER MANHOLE ACCESS DWGS WITH CONTRACTOR UMC",7112,"CCGTD1_IPS",TT_Mile,"61475",-,-,-,100,TK_Complete,26/01/2018,24/01/2018,26/01/2018,24/01/2018,"SI1UMC2I85 FS","SI1UMC2I85","SI1UMC3I29 FS","SI1UMC3I29",130,166,130,166,30,38,30,38,17,,"CCGT D1_Integrated Programme Schedule;OEM (Engineering & Deliverables);GAS AND STEAM TURBINE AREA;GAS AND STEAM TURBINE BUILDING;Steel Platforms UMC - Condenser Manhole Access Platform",1,1,0.0000000828,0.0002034588,0.0004069176,0,1.0,0.0000812387,0.0068493151,0.0030769231,0.000125,0.0005221932,0.0012870013,0.0,1.0,0.0
1.5.10.16.14-3,SI1UMC3I29,"FABRICATION DESIGN, FABRICATION, TRANSPORT, ON SITE STEEL PLATFORM CONDENSER MANHOLE ACCESS UMC",7112,"CCGTD1_IPS",TT_Task,"61475",-,-,-,100,TK_Complete,26/01/2018,24/01/2018,05/04/2018,27/06/2018,"SI1UMC2I87 FS","SI1UMC2I87","SI1UMC3H25# FF,SI1UMC3H25# SS","SI1UMC3H25#,SI1UMC3H25#",130,166,140,188,30,38,32,44,17,,"CCGT D1_Integrated Programme Schedule;OEM (Engineering & Deliverables);GAS AND STEAM TURBINE AREA;GAS AND STEAM TURBINE BUILDING;Steel Platforms UMC - Condenser Manhole Access Platform",1,0,0.0,0.0,0.0006103764,69,0.0,0.0001503957,0.0068493151,0.0,0.0,0.0,0.0019305019,0.1547085202,0.0,0.0283369572
1.5.10.16.14-4,SI1UMC2I85,"DETAIL DESIGN / CHECKER STEEL PLATFORM CONDENSER MANHOLE ACCESS UMC",7112,"CCGTD1_IPS",TT_Task,"61475",-,-,-,100,TK_Complete,26/06/2017,02/06/2017,16/09/2017,14/11/2017,"SI1UMC2I83 FS","SI1UMC2I83","SI1BZP2K30 SS,SI1UMC2I87 FS","SI1BZP2K30,SI1UMC2I87",99,133,111,156,23,31,26,36,8,,"CCGT D1_Integrated Programme Schedule;OEM (Engineering & Deliverables);GAS AND STEAM TURBINE AREA;GAS AND STEAM TURBINE BUILDING;Steel Platforms UMC - Condenser Manhole Access Platform",1,2,0.0000001242,0.0006103764,0.0002034588,82,0.0,0.0001503957,0.0068493151,0.0061538462,0.0001875,0.0015665796,0.0006435006,0.1838565022,0.0,0.0283369572
1.5.10.16.15,61474,"Steel Platforms UMC - GT Platform",7112,"CCGTD1_IPS",WBS,"61465",,,,100,Complete,31/05/2017,01/05/2017,13/02/2018,23/04/2018,,,,,96,128,132,179,22,29,31,41,,,"CCGT D1_Integrated Programme Schedule;OEM (Engineering & Deliverables);GAS AND STEAM TURBINE AREA;GAS AND STEAM TURBINE BUILDING"
1.5.10.16.15-1,SI1UMC2J60,"(MS3) STEEL PLATFORM GT, FINAL DIMENSIONS AND LOADS AVAILABLE UMC",7112,"CCGTD1_IPS",TT_FinMile,"61474",-,-,-,100,TK_Complete,31/05/2017,19/05/2017,31/05/2017,19/05/2017,"SI-M--2C20 FS,SI-MB-2-20 FS","SI-M--2C20,SI-MB-2-20","SI1UMC2J70 FS","SI1UMC2J70",96,131,96,131,22,30,22,30,6,,"CCGT D1_Integrated Programme Schedule;OEM (Engineering & Deliverables);GAS AND STEAM TURBINE AREA;GAS AND STEAM TURBINE BUILDING;Steel Platforms UMC - GT Platform",2,1,0.0000004306,0.0008138352,0.0006103764,0,1.0,0.0000812387,0.0136986301,0.0030769231,0.00065,0.0020887728,0.0019305019,0.0,1.0,0.0
1.5.10.16.15-2,SI1UMC2J75,"(F) DETAIL DESIGN STEEL PLATFORM GT DWGS WITH CONTRACTOR UMC",7112,"CCGTD1_IPS",TT_Mile,"61474",-,-,-,100,TK_Complete,31/10/2017,31/10/2017,31/10/2017,31/10/2017,"SI1UMC2J70 FS","SI1UMC2J70","SI1UMC3J25 FS","SI1UMC3J25",117,154,117,154,27,36,27,36,13,,"CCGT D1_Integrated Programme Schedule;OEM (Engineering & Deliverables);GAS AND STEAM TURBINE AREA;GAS AND STEAM TURBINE BUILDING;Steel Platforms UMC - GT Platform",1,1,0.000000207,0.0002034588,0.001017294,0,1.0,0.0000812387,0.0068493151,0.0030769231,0.0003125,0.0005221932,0.0032175032,0.0,1.0,0.0
1.5.10.16.15-3,SI1UMC3J25,"FABRICATION DESIGN, FABRICATION, TRANSPORT, ON SITE STEEL PLATFORM GT UMC",7112,"CCGTD1_IPS",TT_Task,"61474",-,-,-,100,TK_Complete,26/11/2017,01/11/2017,13/02/2018,23/04/2018,"SI1UMC2J75 FS","SI1UMC2J75","SI1UMC3H25# FF,SI1UMC3H25# SS","SI1UMC3H25#,SI1UMC3H25#",121,154,132,179,28,36,31,41,15,,"CCGT D1_Integrated Programme Schedule;OEM (Engineering & Deliverables);GAS AND STEAM TURBINE AREA;GAS AND STEAM TURBINE BUILDING;Steel Platforms UMC - GT Platform",1,0,0.0,0.0,0.0012207528,79,0.0,0.0001503957,0.0068493151,0.0,0.0,0.0,0.0038610039,0.1771300448,0.0,0.0283369572
1.5.10.16.15-4,SI1UMC2J70,"DETAIL DESIGN / CHECKER STEEL PLATFORM GT UMC",7112,"CCGTD1_IPS",TT_Task,"61474",-,-,-,100,TK_Complete,01/06/2017,01/05/2017,02/08/2017,24/05/2017,"SI1UMC2J60 FS","SI1UMC2J60","SI1UMC2J75 FS,SI1BZP2K30 SS","SI1UMC2J75,SI1BZP2K30",96,128,105,131,22,29,24,30,6,,"CCGT D1_Integrated Programme Schedule;OEM (Engineering & Deliverables);GAS AND STEAM TURBINE AREA;GAS AND STEAM TURBINE BUILDING;Steel Platforms UMC - GT Platform",1,2,0.0000004306,0.0006103764,0.0008138352,62,1.0,0.0001503957,0.0068493151,0.0061538462,0.00065,0.0015665796,0.0025740026,0.1390134529,1.0,0.0283369572
1.5.10.16.16,61473,"Steel Platforms UMC - Generator Platform",7112,"CCGTD1_IPS",WBS,"61465",,,,100,Complete,25/06/2017,01/06/2017,09/03/2018,30/08/2018,,,,,99,132,136,197,23,31,31,46,,,"CCGT D1_Integrated Programme Schedule;OEM (Engineering & Deliverables);GAS AND STEAM TURBINE AREA;GAS AND STEAM TURBINE BUILDING"
1.5.10.16.16-1,SI1UMC2L75,"(F) DETAIL DESIGN STEEL PLATFORM ST DWGS WITH CONTRACTOR UMC",7112,"CCGTD1_IPS",TT_Mile,"61473",-,-,-,100,TK_Complete,26/11/2017,25/11/2017,26/11/2017,25/11/2017,"SI1UMC2L70 FS","SI1UMC2L70","SI1UMC3L25 FS","SI1UMC3L25",121,158,121,158,28,36,28,36,14,,"CCGT D1_Integrated Programme Schedule;OEM (Engineering & Deliverables);GAS AND STEAM TURBINE AREA;GAS AND STEAM TURBINE BUILDING;Steel Platforms UMC - Generator Platform",1,1,0.0000001656,0.0002034588,0.0008138352,0,1.0,0.0000812387,0.0068493151,0.0030769231,0.00025,0.0005221932,0.0025740026,0.0,1.0,0.0
1.5.10.16.16-2,SI1UMC3L25,"FABRICATION DESIGN, FABRICATION, TRANSPORT, ON SITE STEEL PLATFORM GENERATOR UMC",7112,"CCGTD1_IPS",TT_Task,"61473",-,-,-,100,TK_Complete,26/11/2017,25/11/2017,09/03/2018,30/08/2018,"SI1UMC2L75 FS","SI1UMC2L75","SI1UMC3H25# FF,SI1UMC3H25# SS","SI1UMC3H25#,SI1UMC3H25#",121,158,136,197,28,36,31,46,14,,"CCGT D1_Integrated Programme Schedule;OEM (Engineering & Deliverables);GAS AND STEAM TURBINE AREA;GAS AND STEAM TURBINE BUILDING;Steel Platforms UMC - Generator Platform",1,0,0.0,0.0,0.001017294,103,0.0,0.0001503957,0.0068493151,0.0,0.0,0.0,0.0032175032,0.230941704,0.0,0.0283369572
1.5.10.16.16-3,SI1UMC2L70,"DETAIL DESIGN / CHECKER STEEL PLATFORM ST UMC",7112,"CCGTD1_IPS",TT_Task,"61473",-,-,-,100,TK_Complete,26/06/2017,02/06/2017,17/08/2017,26/07/2017,"SI1UMC2L60 FS","SI1UMC2L60","SI1BZP2K30 SS,SI1UMC2L75 FS","SI1BZP2K30,SI1UMC2L75",99,133,107,140,23,31,25,32,8,,"CCGT D1_Integrated Programme Schedule;OEM (Engineering & Deliverables);GAS AND STEAM TURBINE AREA;GAS AND STEAM TURBINE BUILDING;Steel Platforms UMC - Generator Platform",1,2,0.0000003064,0.0006103764,0.0006103764,52,0.8,0.0001503957,0.0068493151,0.0061538462,0.0004625,0.0015665796,0.0019305019,0.1165919283,0.8,0.0283369572
1.5.10.16.16-4,SI1UMC2L60,"(MS3) STEEL PLATFORM ST, FINAL DIMENSIONS AND LOADS AVAILABLE UMC",7112,"CCGTD1_IPS",TT_FinMile,"61473",-,-,-,100,TK_Complete,25/06/2017,01/06/2017,25/06/2017,01/06/2017,"SI-M--2C20 FS","SI-M--2C20","SI1UMC2L70 FS","SI1UMC2L70",99,132,99,132,23,31,23,31,7,,"CCGT D1_Integrated Programme Schedule;OEM (Engineering & Deliverables);GAS AND STEAM TURBINE AREA;GAS AND STEAM TURBINE BUILDING;Steel Platforms UMC - Generator Platform",1,1,0.000000265,0.0008138352,0.0004069176,0,1.0,0.0000812387,0.0068493151,0.0030769231,0.0004,0.0020887728,0.0012870013,0.0,1.0,0.0
1.5.10.16.17,61472,"Steel Platforms UMC - CEP Platform",7112,"CCGTD1_IPS",WBS,"61465",,,,100,Complete,30/04/2017,09/04/2017,18/01/2018,23/04/2018,,,,,91,125,129,179,21,29,30,41,,,"CCGT D1_Integrated Programme Schedule;OEM (Engineering & Deliverables);GAS AND STEAM TURBINE AREA;GAS AND STEAM TURBINE BUILDING"
1.5.10.16.17-1,SI1UMC2E70,"DETAIL DESIGN / CHECKER STEEL PLATFORM COND. PIT UMC",7112,"CCGTD1_IPS",TT_Task,"61472",-,-,-,100,TK_Complete,01/05/2017,09/04/2017,02/07/2017,30/05/2017,"SI1UMC2E60 FS","SI1UMC2E60","SI1BZP2K30 SS,SI1UMC2E75 FS","SI1BZP2K30,SI1UMC2E75",91,125,100,132,21,29,23,30,4,,"CCGT D1_Integrated Programme Schedule;OEM (Engineering & Deliverables);GAS AND STEAM TURBINE AREA;GAS AND STEAM TURBINE BUILDING;Steel Platforms UMC - CEP Platform",1,2,0.0000009689,0.0006103764,0.0018311292,62,1.0,0.0001503957,0.0068493151,0.0061538462,0.0014625,0.0015665796,0.0057915058,0.1390134529,1.0,0.0283369572
1.5.10.16.17-2,SI1UMC2E60,"(MS3) STEEL PLATFORM COND. PIT, FINAL DIMENSIONS AND LOADS AVAILABLE UMC",7112,"CCGTD1_IPS",TT_FinMile,"61472",-,-,-,100,TK_Complete,30/04/2017,18/04/2017,30/04/2017,18/04/2017,"SI-M--2C20 FS,SI1LCB2B60 FS,SI-M--2C20 SS","SI-M--2C20,SI1LCB2B60,SI-M--2C20","SI1UMC2E70 FS","SI1UMC2E70",91,126,91,126,21,29,21,29,4,,"CCGT D1_Integrated Programme Schedule;OEM (Engineering & Deliverables);GAS AND STEAM TURBINE AREA;GAS AND STEAM TURBINE BUILDING;Steel Platforms UMC - CEP Platform",2,1,0.0000011759,0.0008138352,0.0016276704,0,1.0,0.0000812387,0.0136986301,0.0030769231,0.001775,0.0020887728,0.0051480051,0.0,1.0,0.0
1.5.10.16.17-3,SI1UMC2E75,"(F) DETAIL DESIGN STEEL PLATFORM COND. PIT DWGS WITH CONTRACTOR UMC",7112,"CCGTD1_IPS",TT_Mile,"61472",-,-,-,100,TK_Complete,31/10/2017,25/11/2017,31/10/2017,25/11/2017,"SI1UMC2E70 FS","SI1UMC2E70","SI1UMC3E25 FS","SI1UMC3E25",117,158,117,158,27,36,27,36,13,,"CCGT D1_Integrated Programme Schedule;OEM (Engineering & Deliverables);GAS AND STEAM TURBINE AREA;GAS AND STEAM TURBINE BUILDING;Steel Platforms UMC - CEP Platform",1,1,0.000000414,0.0002034588,0.002034588,0,1.0,0.0000812387,0.0068493151,0.0030769231,0.000625,0.0005221932,0.0064350064,0.0,1.0,0.0
1.5.10.16.17-4,SI1UMC3E25,"FABRICATION DESIGN, FABRICATION, TRANSPORT, ON SITE STEEL PLATFORM COND. PIT UMC",7112,"CCGTD1_IPS",TT_Task,"61472",-,-,-,100,TK_Complete,26/11/2017,25/11/2017,18/01/2018,23/04/2018,"SI1UMC2E75 FS","SI1UMC2E75","SI1UMC3H25# FF,SI1UMC3H25# SS","SI1UMC3H25#,SI1UMC3H25#",121,158,129,179,28,36,30,41,15,,"CCGT D1_Integrated Programme Schedule;OEM (Engineering & Deliverables);GAS AND STEAM TURBINE AREA;GAS AND STEAM TURBINE BUILDING;Steel Platforms UMC - CEP Platform",1,0,0.0,0.0,0.0022380468,53,0.0,0.0001503957,0.0068493151,0.0,0.0,0.0,0.0070785071,0.1188340807,0.0,0.0283369572
1.5.10.16.18,61471,"Steel Platforms UMC - Entrance Platform",7112,"CCGTD1_IPS",WBS,"61465",,,,100,Complete,31/05/2017,25/05/2017,08/02/2018,27/06/2018,,,,,96,131,132,188,22,30,30,44,,,"CCGT D1_Integrated Programme Schedule;OEM (Engineering & Deliverables);GAS AND STEAM TURBINE AREA;GAS AND STEAM TURBINE BUILDING"
1.5.10.16.18-1,SI1UMC2F60,"(MS3) STEEL PLATFORM ENTRANCE, FINAL DIMENSIONS AND LOADS AVAILABLE UMC",7112,"CCGTD1_IPS",TT_FinMile,"61471",-,-,-,100,TK_Complete,31/05/2017,25/05/2017,31/05/2017,25/05/2017,"SI-M--2C20 FS","SI-M--2C20","SI1UMC2F70 FS","SI1UMC2F70",96,131,96,131,22,30,22,30,6,,"CCGT D1_Integrated Programme Schedule;OEM (Engineering & Deliverables);GAS AND STEAM TURBINE AREA;GAS AND STEAM TURBINE BUILDING;Steel Platforms UMC - Entrance Platform",1,1,0.000000265,0.0008138352,0.0004069176,0,1.0,0.0000812387,0.0068493151,0.0030769231,0.0004,0.0020887728,0.0012870013,0.0,1.0,0.0
1.5.10.16.18-2,SI1UMC2F75,"(F) DETAIL DESIGN STEEL PLATFORM ENTRANCE DWGS WITH CONTRACTOR UMC",7112,"CCGTD1_IPS",TT_Mile,"61471",-,-,-,100,TK_Complete,26/11/2017,24/11/2017,26/11/2017,24/11/2017,"SI1UMC2F70 FS","SI1UMC2F70","SI1UMC3F25 FS","SI1UMC3F25",121,158,121,158,28,36,28,36,14,,"CCGT D1_Integrated Programme Schedule;OEM (Engineering & Deliverables);GAS AND STEAM TURBINE AREA;GAS AND STEAM TURBINE BUILDING;Steel Platforms UMC - Entrance Platform",1,1,0.0000001656,0.0002034588,0.0008138352,0,1.0,0.0000812387,0.0068493151,0.0030769231,0.00025,0.0005221932,0.0025740026,0.0,1.0,0.0
1.5.10.16.18-3,SI1UMC3F25,"FABRICATION DESIGN, FABRICATION, TRANSPORT, ON SITE STEEL PLATFORM ENTRANCE UMC",7112,"CCGTD1_IPS",TT_Task,"61471",-,-,-,100,TK_Complete,21/11/2017,24/11/2017,08/02/2018,27/06/2018,"SI1UMC2F75 FS","SI1UMC2F75","SI1UMC3H25# FF,SI1UMC3H25# SS","SI1UMC3H25#,SI1UMC3H25#",120,158,132,188,28,36,30,44,14,,"CCGT D1_Integrated Programme Schedule;OEM (Engineering & Deliverables);GAS AND STEAM TURBINE AREA;GAS AND STEAM TURBINE BUILDING;Steel Platforms UMC - Entrance Platform",1,0,0.0,0.0,0.001017294,79,0.0,0.0001503957,0.0068493151,0.0,0.0,0.0,0.0032175032,0.1771300448,0.0,0.0283369572
1.5.10.16.18-4,SI1UMC2F70,"DETAIL DESIGN / CHECKER STEEL PLATFORM ENTRANCE UMC",7112,"CCGTD1_IPS",TT_Task,"61471",-,-,-,100,TK_Complete,01/06/2017,26/05/2017,26/07/2017,25/07/2017,"SI1UMC2F60 FS","SI1UMC2F60","SI1UMC2F75 FS,SI1BZP2K30 SS","SI1UMC2F75,SI1BZP2K30",96,132,104,140,22,30,24,32,6,,"CCGT D1_Integrated Programme Schedule;OEM (Engineering & Deliverables);GAS AND STEAM TURBINE AREA;GAS AND STEAM TURBINE BUILDING;Steel Platforms UMC - Entrance Platform",1,2,0.0000003064,0.0006103764,0.0006103764,55,0.8,0.0001503957,0.0068493151,0.0061538462,0.0004625,0.0015665796,0.0019305019,0.1233183857,0.8,0.0283369572
1.5.10.16.19,61470,"Steel Platforms UMC - Crane Rails for Main Building &Annex",7112,"CCGTD1_IPS",WBS,"61465",,,,100,Complete,01/07/2017,01/06/2017,18/01/2018,14/02/2018,,,,,100,132,129,169,23,31,30,39,,,"CCGT D1_Integrated Programme Schedule;OEM (Engineering & Deliverables);GAS AND STEAM TURBINE AREA;GAS AND STEAM TURBINE BUILDING"
1.5.10.16.19-1,SI1UMC2I113,"(MS3) STEEL PLATFORM CRANE RAILS FINAL DIMENSIONS AND LOADS AVAILABLE UMC",7112,"CCGTD1_IPS",TT_FinMile,"61470",-,-,-,100,TK_Complete,01/07/2017,01/06/2017,01/07/2017,01/06/2017,"SI1UMC2B70 FS","SI1UMC2B70","SI1UMC2I115 FS","SI1UMC2I115",100,132,100,132,23,31,23,31,8,,"CCGT D1_Integrated Programme Schedule;OEM (Engineering & Deliverables);GAS AND STEAM TURBINE AREA;GAS AND STEAM TURBINE BUILDING;Steel Platforms UMC - Crane Rails for Main Building &Annex",1,1,0.0000007453,0.0006103764,0.0012207528,0,1.0,0.0000812387,0.0068493151,0.0030769231,0.001125,0.0015665796,0.0038610039,0.0,1.0,0.0
1.5.10.16.19-2,SI1UMC2I117,"(F) DETAIL DESIGN STEEL PLATFORM CRANE RAILS DWGS WITH CONTRACTOR UMC",7112,"CCGTD1_IPS",TT_Mile,"61470",-,-,-,100,TK_Complete,31/10/2017,25/11/2017,31/10/2017,25/11/2017,"SI1UMC2I115 FS","SI1UMC2I115","SI1UMC3I39 FS","SI1UMC3I39",117,158,117,158,27,36,27,36,13,,"CCGT D1_Integrated Programme Schedule;OEM (Engineering & Deliverables);GAS AND STEAM TURBINE AREA;GAS AND STEAM TURBINE BUILDING;Steel Platforms UMC - Crane Rails for Main Building &Annex",1,1,0.0000003312,0.0002034588,0.0016276704,0,1.0,0.0000812387,0.0068493151,0.0030769231,0.0005,0.0005221932,0.0051480051,0.0,1.0,0.0
1.5.10.16.19-3,SI1UMC3I39,"FABRICATION DESIGN, FABRICATION, TRANSPORT STEEL PLATFORM CRANE RAILS UMC",7112,"CCGTD1_IPS",TT_Task,"61470",-,-,-,100,TK_Complete,31/10/2017,25/11/2017,18/01/2018,14/02/2018,"SI1UMC2I117 FS","SI1UMC2I117","","",117,158,129,169,27,36,30,39,13,,"CCGT D1_Integrated Programme Schedule;OEM (Engineering & Deliverables);GAS AND STEAM TURBINE AREA;GAS AND STEAM TURBINE BUILDING;Steel Platforms UMC - Crane Rails for Main Building &Annex",1,0,0.0,0.0,0.0018311292,79,0.6,0.0001503957,0.0068493151,0.0,0.0,0.0,0.0057915058,0.1771300448,0.6,0.0283369572
1.5.10.16.19-4,SI1UMC2I115,"DETAIL DESIGN / CHECKER STEEL PLATFORM CRANE RAILS UMC",7112,"CCGTD1_IPS",TT_Task,"61470",-,-,-,100,TK_Complete,02/07/2017,02/06/2017,02/09/2017,07/08/2017,"SI1UMC2I113 FS","SI1UMC2I113","SI1UMC2I117 FS","SI1UMC2I117",100,133,109,142,23,31,25,33,8,,"CCGT D1_Integrated Programme Schedule;OEM (Engineering & Deliverables);GAS AND STEAM TURBINE AREA;GAS AND STEAM TURBINE BUILDING;Steel Platforms UMC - Crane Rails for Main Building &Annex",1,1,0.0000005797,0.0004069176,0.0014242116,62,0.6,0.0001503957,0.0068493151,0.0030769231,0.000875,0.0010443864,0.0045045045,0.1390134529,0.6,0.0283369572
1.5.10.16.20,61469,"Steel Platforms UMC - Main Crane Walkway & Access / Lube Oil Platform / Staircase",7112,"CCGTD1_IPS",WBS,"61465",,,,100,Complete,01/04/2017,16/03/2017,18/01/2018,23/04/2018,,,,,87,121,129,179,20,28,30,41,,,"CCGT D1_Integrated Programme Schedule;OEM (Engineering & Deliverables);GAS AND STEAM TURBINE AREA;GAS AND STEAM TURBINE BUILDING"
1.5.10.16.20-1,SI1UMC2B60,"(MS3) CRANE WALKWAY FINAL DIMENSIONS AND LOADS AVAILABLE UMC",7112,"CCGTD1_IPS",TT_FinMile,"61469",-,-,-,100,TK_Complete,07/04/2017,29/03/2017,07/04/2017,29/03/2017,"SI1SMM2-60 FS,SI-MB-2-20 FS","SI1SMM2-60,SI-MB-2-20","SI1UMC2B70 FF","SI1UMC2B70",88,123,88,123,20,28,20,28,4,,"CCGT D1_Integrated Programme Schedule;OEM (Engineering & Deliverables);GAS AND STEAM TURBINE AREA;GAS AND STEAM TURBINE BUILDING;Steel Platforms UMC - Main Crane Walkway & Access / Lube Oil Platform / Staircase",2,1,0.0000011593,0.0014242116,0.0008138352,0,1.0,0.0000812387,0.0136986301,0.0030769231,0.00175,0.0036553525,0.0025740026,0.0,1.0,0.0
1.5.10.16.20-2,SI1UMC2B70,"DETAIL DESIGN / CHECKER CRANE WALKWAY UMC",7112,"CCGTD1_IPS",TT_Task,"61469",-,-,-,100,TK_Complete,01/04/2017,16/03/2017,23/06/2017,24/07/2017,"SI1UMC2B60 FF","SI1UMC2B60","SI1UMC2I113 FS,SI1UMC2B75 FS","SI1UMC2I113,SI1UMC2B75",87,121,99,140,20,28,23,32,4,,"CCGT D1_Integrated Programme Schedule;OEM (Engineering & Deliverables);GAS AND STEAM TURBINE AREA;GAS AND STEAM TURBINE BUILDING;Steel Platforms UMC - Main Crane Walkway & Access / Lube Oil Platform / Staircase",1,2,0.0000012421,0.0012207528,0.001017294,83,0.0,0.0001503957,0.0068493151,0.0061538462,0.001875,0.0031331593,0.0032175032,0.1860986547,0.0,0.0283369572
1.5.10.16.20-3,SI1UMC2B75,"(F) DETAIL DESIGN CRANE WALKWAY WITH CONTRACTOR UMC",7112,"CCGTD1_IPS",TT_Mile,"61469",-,-,-,100,TK_Complete,26/11/2017,09/11/2017,26/11/2017,09/11/2017,"SI1UMC2B70 FS","SI1UMC2B70","SI1UMC3B25 FS","SI1UMC3B25",121,155,121,155,28,36,28,36,14,,"CCGT D1_Integrated Programme Schedule;OEM (Engineering & Deliverables);GAS AND STEAM TURBINE AREA;GAS AND STEAM TURBINE BUILDING;Steel Platforms UMC - Main Crane Walkway & Access / Lube Oil Platform / Staircase",1,1,0.0000002484,0.0002034588,0.0012207528,0,1.0,0.0000812387,0.0068493151,0.0030769231,0.000375,0.0005221932,0.0038610039,0.0,1.0,0.0
1.5.10.16.20-4,SI1UMC3B25,"FABRICATION DESIGN, FABRICATION, TRANSPORT, ON SITE CRANE WALKWAY UMC",7112,"CCGTD1_IPS",TT_Task,"61469",-,-,-,100,TK_Complete,31/10/2017,10/11/2017,18/01/2018,23/04/2018,"SI1UMC2B75 FS,SI-U--2B85 FS","SI1UMC2B75,SI-U--2B85","","",117,156,129,179,27,36,30,41,13,,"CCGT D1_Integrated Programme Schedule;OEM (Engineering & Deliverables);GAS AND STEAM TURBINE AREA;GAS AND STEAM TURBINE BUILDING;Steel Platforms UMC - Main Crane Walkway & Access / Lube Oil Platform / Staircase",2,0,0.0,0.0,0.002034588,79,0.0,0.0001610043,0.0136986301,0.0,0.0,0.0,0.0064350064,0.1771300448,0.0,0.0326837914
1.5.10.16.20-5,SI1UMC2G60,"(MS3) STEEL PLATFORM LUBE OIL, FINAL DIMENSIONS AND LOADS AVAILABLE UMC",7112,"CCGTD1_IPS",TT_FinMile,"61469",-,-,-,100,TK_Complete,25/06/2017,01/06/2017,25/06/2017,01/06/2017,"SI-M--2C20 FS","SI-M--2C20","SI1UMC2G70 FS","SI1UMC2G70",99,132,99,132,23,31,23,31,7,,"CCGT D1_Integrated Programme Schedule;OEM (Engineering & Deliverables);GAS AND STEAM TURBINE AREA;GAS AND STEAM TURBINE BUILDING;Steel Platforms UMC - Main Crane Walkway & Access / Lube Oil Platform / Staircase",1,1,0.000000265,0.0008138352,0.0004069176,0,1.0,0.0000812387,0.0068493151,0.0030769231,0.0004,0.0020887728,0.0012870013,0.0,1.0,0.0
1.5.10.16.20-6,SI1UMC2G75,"(F) DETAIL DESIGN STEEL PLATFORM LUBE OIL DWGS WITH CONTRACTOR UMC",7112,"CCGTD1_IPS",TT_Mile,"61469",-,-,-,100,TK_Complete,26/11/2017,09/11/2017,26/11/2017,09/11/2017,"SI1UMC2G70 FS","SI1UMC2G70","SI1UMC3G25 FS","SI1UMC3G25",121,155,121,155,28,36,28,36,15,,"CCGT D1_Integrated Programme Schedule;OEM (Engineering & Deliverables);GAS AND STEAM TURBINE AREA;GAS AND STEAM TURBINE BUILDING;Steel Platforms UMC - Main Crane Walkway & Access / Lube Oil Platform / Staircase",1,1,0.0000001656,0.0002034588,0.0008138352,0,1.0,0.0000812387,0.0068493151,0.0030769231,0.00025,0.0005221932,0.0025740026,0.0,1.0,0.0
1.5.10.16.20-7,SI1UMC3G25,"FABRICATION DESIGN, FABRICATION, TRANSPORT, ON SITE STEEL PLATFORM LUBE OIL UMC",7112,"CCGTD1_IPS",TT_Task,"61469",-,-,-,100,TK_Complete,31/10/2017,10/11/2017,18/01/2018,23/04/2018,"SI1UMC2G75 FS","SI1UMC2G75","SI1UMC3H25# SS,SI1UMC3H25# FF","SI1UMC3H25#,SI1UMC3H25#",117,156,129,179,27,36,30,41,13,,"CCGT D1_Integrated Programme Schedule;OEM (Engineering & Deliverables);GAS AND STEAM TURBINE AREA;GAS AND STEAM TURBINE BUILDING;Steel Platforms UMC - Main Crane Walkway & Access / Lube Oil Platform / Staircase",1,0,0.0,0.0,0.001017294,79,0.0,0.0001503957,0.0068493151,0.0,0.0,0.0,0.0032175032,0.1771300448,0.0,0.0283369572
1.5.10.16.20-8,SI1UMC2G70,"DETAIL DESIGN / CHECKER STEEL PLATFORM LUBE OIL UMC",7112,"CCGTD1_IPS",TT_Task,"61469",-,-,-,100,TK_Complete,26/06/2017,02/06/2017,11/08/2017,24/07/2017,"SI1UMC2G60 FS","SI1UMC2G60","SI1BZP2K30 SS,SI1UMC2G75 FS","SI1BZP2K30,SI1UMC2G75",99,133,106,140,23,31,24,32,8,,"CCGT D1_Integrated Programme Schedule;OEM (Engineering & Deliverables);GAS AND STEAM TURBINE AREA;GAS AND STEAM TURBINE BUILDING;Steel Platforms UMC - Main Crane Walkway & Access / Lube Oil Platform / Staircase",1,2,0.0000003064,0.0006103764,0.0006103764,46,0.8,0.0001503957,0.0068493151,0.0061538462,0.0004625,0.0015665796,0.0019305019,0.1031390135,0.8,0.0283369572
1.5.10.16.21,61468,"Building Foundation  UMC",7112,"CCGTD1_IPS",WBS,"61465",,,,100,Complete,29/03/2017,14/03/2017,02/05/2017,29/03/2017,,,,,87,121,91,123,20,28,21,28,,,"CCGT D1_Integrated Programme Schedule;OEM (Engineering & Deliverables);GAS AND STEAM TURBINE AREA;GAS AND STEAM TURBINE BUILDING"
1.5.10.16.21-1,SI1UMC2-45,"PREPARATION BASIC BUILDING DWGS  UMC",7112,"CCGTD1_IPS",TT_Task,"61468",-,-,-,100,TK_Complete,29/03/2017,14/03/2017,02/05/2017,29/03/2017,"SI-3412-20 FS,SI1UMC2-60 FS","SI-3412-20,SI1UMC2-60","","",87,121,91,123,20,28,21,28,3,,"CCGT D1_Integrated Programme Schedule;OEM (Engineering & Deliverables);GAS AND STEAM TURBINE AREA;GAS AND STEAM TURBINE BUILDING;Building Foundation  UMC",2,0,0.0,0.0,0.004069176,34,1.0,0.0001538896,0.0136986301,0.0,0.0,0.0,0.0128700129,0.0762331839,1.0,0.029768542
1.5.10.16.21-2,SI1UMC2-60,"(MS3) CONCRETE STRUCTURE, FINAL DIMENSIONS AND LOADS AVAILABLE UMC",7112,"CCGTD1_IPS",TT_FinMile,"61468",-,-,-,100,TK_Complete,10/04/2017,21/03/2017,10/04/2017,21/03/2017,"SI-M--2C20 SS,SI1PCB2B60 FS,SI1PAH2-60 FS,SI-MB-2-20 FS","SI-M--2C20,SI1PCB2B60,SI1PAH2-60,SI-MB-2-20","SI1UMC2-45 FS","SI1UMC2-45",88,122,88,122,20,28,20,28,4,,"CCGT D1_Integrated Programme Schedule;OEM (Engineering & Deliverables);GAS AND STEAM TURBINE AREA;GAS AND STEAM TURBINE BUILDING;Building Foundation  UMC",4,1,0.0000007039,0.0002034588,0.0034587996,0,1.0,0.0000812387,0.0273972603,0.0030769231,0.0010625,0.0005221932,0.0109395109,0.0,1.0,0.0
1.5.10.16.22,61467,"Concrete Structure Condensate Pit  UMC",7112,"CCGTD1_IPS",WBS,"61465",,,,100,Complete,14/02/2017,05/02/2017,20/03/2017,22/02/2017,,,,,80,116,85,118,18,27,20,27,,,"CCGT D1_Integrated Programme Schedule;OEM (Engineering & Deliverables);GAS AND STEAM TURBINE AREA;GAS AND STEAM TURBINE BUILDING"
1.5.10.16.22-1,SI1UMC2Y60,"(MS3) CONCRETE STRUCTURE FINAL DIMENSIONS LOADS AVAILABLE COND.PIT UMC 3a",7112,"CCGTD1_IPS",TT_FinMile,"61467",-,-,-,100,TK_Complete,28/02/2017,18/02/2017,28/02/2017,18/02/2017,"SI1LCB2B60 FS","SI1LCB2B60","SI1UMC2Y45 FF","SI1UMC2Y45",82,118,82,118,19,27,19,27,2,,"CCGT D1_Integrated Programme Schedule;OEM (Engineering & Deliverables);GAS AND STEAM TURBINE AREA;GAS AND STEAM TURBINE BUILDING;Concrete Structure Condensate Pit  UMC",1,1,0.0000002484,0.0002034588,0.0012207528,0,1.0,0.0000812387,0.0068493151,0.0030769231,0.000375,0.0005221932,0.0038610039,0.0,1.0,0.0
1.5.10.16.22-2,SI1UMC2Y45,"PREPARATION BASIC BUILDING DWGS  COND. PIT UMC",7112,"CCGTD1_IPS",TT_Task,"61467",-,-,-,100,TK_Complete,14/02/2017,05/02/2017,20/03/2017,22/02/2017,"SI1UMC2Y60 FF,SI-3412-20 FS","SI1UMC2Y60,SI-3412-20","","",80,116,85,118,18,27,20,27,2,,"CCGT D1_Integrated Programme Schedule;OEM (Engineering & Deliverables);GAS AND STEAM TURBINE AREA;GAS AND STEAM TURBINE BUILDING;Concrete Structure Condensate Pit  UMC",2,0,0.0,0.0,0.0018311292,34,1.0,0.0001538896,0.0136986301,0.0,0.0,0.0,0.0057915058,0.0762331839,1.0,0.029768542
1.5.10.16.23,61466,"Turboset Foundation  UMC",7112,"CCGTD1_IPS",WBS,"61465",,,,100,Complete,14/02/2017,02/02/2017,21/08/2017,13/10/2017,,,,,80,115,107,152,18,27,25,35,,,"CCGT D1_Integrated Programme Schedule;OEM (Engineering & Deliverables);GAS AND STEAM TURBINE AREA;GAS AND STEAM TURBINE BUILDING"
1.5.10.16.23-1,SI1UMC4A50,"EMBEDDED PARTS FOR TURBOSET FOUNDATION UMC ON-SITE",7112,"CCGTD1_IPS",TT_Mile,"61466",-,-,-,100,TK_Complete,21/08/2017,20/07/2017,21/08/2017,20/07/2017,"SI1UMC3B27 FS,SI1UMC2A65 FS","SI1UMC3B27,SI1UMC2A65","","",107,139,107,139,25,32,25,32,10,,"CCGT D1_Integrated Programme Schedule;OEM (Engineering & Deliverables);GAS AND STEAM TURBINE AREA;GAS AND STEAM TURBINE BUILDING;Turboset Foundation  UMC",2,0,0.0,0.0,0.0018311292,0,1.0,0.0000812387,0.0136986301,0.0,0.0,0.0,0.0057915058,0.0,1.0,0.0
1.5.10.16.23-2,SI1UMC2A60,"(MS3) CONCRETE STRUCTURE FINAL DIMENSIONS AND LOADS AVAILABLE TS FOUNDATION UMC",7112,"CCGTD1_IPS",TT_FinMile,"61466",-,-,-,100,TK_Complete,30/04/2017,18/04/2017,30/04/2017,18/04/2017,"SI-3412-20 FS","SI-3412-20","SI1UMC2A70 FF","SI1UMC2A70",91,126,91,126,21,29,21,29,4,,"CCGT D1_Integrated Programme Schedule;OEM (Engineering & Deliverables);GAS AND STEAM TURBINE AREA;GAS AND STEAM TURBINE BUILDING;Turboset Foundation  UMC",1,1,0.0000002484,0.0006103764,0.0004069176,0,1.0,0.0000812387,0.0068493151,0.0030769231,0.000375,0.0015665796,0.0012870013,0.0,1.0,0.0
1.5.10.16.23-3,SI1UMC2A70,"DETAIL DESIGN / CHECKER CONCRETE STRUCTURE TS FOUNDATION UMC",7112,"CCGTD1_IPS",TT_Task,"61466",-,-,-,100,TK_Complete,14/02/2017,02/02/2017,15/05/2017,13/10/2017,"SI1UMC2A60 FF,SI1UMC2A65 FF","SI1UMC2A60,SI1UMC2A65","SI1UMC3B27 FS","SI1UMC3B27",80,115,93,152,18,27,21,35,2,,"CCGT D1_Integrated Programme Schedule;OEM (Engineering & Deliverables);GAS AND STEAM TURBINE AREA;GAS AND STEAM TURBINE BUILDING;Turboset Foundation  UMC",2,1,0.0000002898,0.0004069176,0.0008138352,90,0.0,0.0002195528,0.0136986301,0.0030769231,0.0004375,0.0010443864,0.0025740026,0.201793722,0.0,0.0566739144
1.5.10.16.23-4,SI1UMC2A65,"(MS4) CONCRETE STRUCTURE FINAL INPUT EMBEDDED PARTS TS FOUNDATION UMC",7112,"CCGTD1_IPS",TT_FinMile,"61466",-,-,-,100,TK_Complete,30/04/2017,18/04/2017,30/04/2017,18/04/2017,"","","SI1UMC4A50 FS,SI1UMC2A70 FF","SI1UMC4A50,SI1UMC2A70",91,126,91,126,21,29,21,29,4,,"CCGT D1_Integrated Programme Schedule;OEM (Engineering & Deliverables);GAS AND STEAM TURBINE AREA;GAS AND STEAM TURBINE BUILDING;Turboset Foundation  UMC",0,2,0.0,0.0006103764,0.0,0,1.0,0.0000812387,0.0,0.0061538462,0.0,0.0015665796,0.0,0.0,1.0,0.0
1.5.10.16.23-5,SI1UMC3B27,"FABRICATION DESIGN, FABRICATION, TRANSPORT EMBEDDED PARTS FOR TURBOSET FDN UMC",7112,"CCGTD1_IPS",TT_Task,"61466",-,-,-,100,TK_Complete,01/05/2017,01/04/2017,01/08/2017,11/07/2017,"SI-U--2B85 FS,SI1UMC2A70 FS","SI-U--2B85,SI1UMC2A70","SI1UMC4A50 FS","SI1UMC4A50",91,124,104,138,21,28,24,32,4,,"CCGT D1_Integrated Programme Schedule;OEM (Engineering & Deliverables);GAS AND STEAM TURBINE AREA;GAS AND STEAM TURBINE BUILDING;Turboset Foundation  UMC",2,1,0.0000002898,0.0002034588,0.0016276704,92,0.2,0.0002804466,0.0136986301,0.0030769231,0.0004375,0.0005221932,0.0051480051,0.2062780269,0.2,0.0816250587
1.5.11,61412,"WHOLE PLANT / GENERAL ACTIVITIES",7112,"CCGTD1_IPS",WBS,"58234",,,,100,Complete,09/07/2016,16/04/2016,12/12/2021,,,,,,49,74,332,,11,17,77,,,,"CCGT D1_Integrated Programme Schedule;OEM (Engineering & Deliverables)"
1.5.11.1,61457,"I&C REALIZATION",7112,"CCGTD1_IPS",WBS,"61412",,,,100,Complete,01/05/2017,15/04/2017,12/12/2021,14/11/2019,,,,,91,126,332,260,21,29,77,60,,,"CCGT D1_Integrated Programme Schedule;OEM (Engineering & Deliverables);WHOLE PLANT / GENERAL ACTIVITIES"
1.5.11.1.1,61463,"Emmission Monitoring",7112,"CCGTD1_IPS",WBS,"61457",,,,100,Complete,01/05/2017,15/04/2017,29/08/2018,14/11/2019,,,,,91,126,161,260,21,29,37,60,,,"CCGT D1_Integrated Programme Schedule;OEM (Engineering & Deliverables);WHOLE PLANT / GENERAL ACTIVITIES;I&C REALIZATION"
1.5.11.1.1-1,SI-CFE3-80,"(RFS) READY FOR SHIPMENT EMISSION MONITORING SYSTEM - CONTAINER",7112,"CCGTD1_IPS",TT_FinMile,"61463",-,-,-,100,TK_Complete,30/06/2018,31/10/2019,30/06/2018,31/10/2019,"SI-CFE3-25 FS","SI-CFE3-25","SI-CFE4-25 FS","SI-CFE4-25",152,258,152,258,35,60,35,60,31,,"CCGT D1_Integrated Programme Schedule;OEM (Engineering & Deliverables);WHOLE PLANT / GENERAL ACTIVITIES;I&C REALIZATION;Emmission Monitoring",1,1,0.0000000828,0.0004069176,0.0002034588,0,1.0,0.0000812387,0.0068493151,0.0030769231,0.000125,0.0010443864,0.0006435006,0.0,1.0,0.0
1.5.11.1.1-2,SI-CFE4-42,"(OTD-OS) ON SITE EMISSION MONITORING SYSTEM",7112,"CCGTD1_IPS",TT_FinMile,"61463",-,-,-,100,TK_Complete,29/08/2018,14/11/2019,29/08/2018,14/11/2019,"SI-CFE4-25 FS","SI-CFE4-25","","",161,260,161,260,37,60,37,60,35,,"CCGT D1_Integrated Programme Schedule;OEM (Engineering & Deliverables);WHOLE PLANT / GENERAL ACTIVITIES;I&C REALIZATION;Emmission Monitoring",1,0,0.0,0.0,0.0168870804,0,1.0,0.0000812387,0.0068493151,0.0,0.0,0.0,0.0534105534,0.0,1.0,0.0
1.5.11.1.1-3,SI-CFE3-25,"DETAIL DESIGN, MANUFACTURING/ SHOP TEST FOR EMISSION MONITORING SYSTEM",7112,"CCGTD1_IPS",TT_Task,"61463",-,-,-,100,TK_Complete,01/05/2017,15/04/2017,18/02/2018,24/05/2018,"","","SI-CFE3-80 FS","SI-CFE3-80",91,126,133,183,21,29,31,42,4,,"CCGT D1_Integrated Programme Schedule;OEM (Engineering & Deliverables);WHOLE PLANT / GENERAL ACTIVITIES;I&C REALIZATION;Emmission Monitoring",0,1,0.0,0.0006103764,0.0,293,0.0,0.0000812387,0.0,0.0030769231,0.0,0.0015665796,0.0,0.6569506726,0.0,0.0
1.5.11.1.1-4,SI-CFE4-25,"TRANSPORT TO SITE EMISSION MONITORING SYSTEM",7112,"CCGTD1_IPS",TT_Task,"61463",-,-,-,100,TK_Complete,01/07/2018,31/10/2019,29/08/2018,14/11/2019,"SI-CFE3-80 FS,SI1UBA4G27 SS","SI-CFE3-80,SI1UBA4G27","SI-CFE4-42 FS","SI-CFE4-42",152,258,161,260,35,60,37,60,31,,"CCGT D1_Integrated Programme Schedule;OEM (Engineering & Deliverables);WHOLE PLANT / GENERAL ACTIVITIES;I&C REALIZATION;Emmission Monitoring",2,1,0.0000033951,0.0002034588,0.0166836216,59,1.0,0.0002784011,0.0136986301,0.0030769231,0.005125,0.0005221932,0.0527670528,0.1322869955,1.0,0.0807868971
1.5.11.1.2,61462,"Central Control Room Furnitures / Equipment (I&C related)",7112,"CCGTD1_IPS",WBS,"61457",,,,100,Complete,01/06/2017,17/05/2017,12/12/2021,12/11/2018,,,,,96,130,332,208,22,30,77,48,,,"CCGT D1_Integrated Programme Schedule;OEM (Engineering & Deliverables);WHOLE PLANT / GENERAL ACTIVITIES;I&C REALIZATION"
1.5.11.1.2-1,SI-CR-4-42,"(OTD-OS) ON SITE CCR HMI EQUIPMENT",7112,"CCGTD1_IPS",TT_FinMile,"61462",-,-,-,100,TK_Complete,18/08/2018,12/11/2018,18/08/2018,12/11/2018,"SI-CR-4-25 FS","SI-CR-4-25","","",159,208,159,208,37,48,37,48,34,,"CCGT D1_Integrated Programme Schedule;OEM (Engineering & Deliverables);WHOLE PLANT / GENERAL ACTIVITIES;I&C REALIZATION;Central Control Room Furnitures / Equipment (I&C related)",1,0,0.0,0.0,0.0002034588,0,1.0,0.0000812387,0.0068493151,0.0,0.0,0.0,0.0006435006,0.0,1.0,0.0
1.5.11.1.2-2,SI-CR-3-25,"DETAIL DESIGN, MANUFACTURING/ SHOP TEST FOR CCR HMI EQUIPMENT",7112,"CCGTD1_IPS",TT_Task,"61462",-,-,-,100,TK_Complete,01/06/2017,18/05/2017,17/01/2018,22/08/2018,"SI-CR-3-26 FS","SI-CR-3-26","SI-CR-3-80 FS,SI1UBA3G80 FS","SI-CR-3-80,SI1UBA3G80",96,130,129,196,22,30,30,45,6,,"CCGT D1_Integrated Programme Schedule;OEM (Engineering & Deliverables);WHOLE PLANT / GENERAL ACTIVITIES;I&C REALIZATION;Central Control Room Furnitures / Equipment (I&C related)",1,2,0.000000207,0.001017294,0.0002034588,230,0.0,0.0001503957,0.0068493151,0.0061538462,0.0003125,0.0026109661,0.0006435006,0.5156950673,0.0,0.0283369572
1.5.11.1.2-3,SI-CR-3-26,"CENTRAL CONTROL ROOM I&C EQUIPMENT CONCEPT PLAN READY",7112,"CCGTD1_IPS",TT_FinMile,"61462",-,-,-,100,TK_Complete,12/12/2021,17/05/2017,12/12/2021,17/05/2017,"","","SI-CR-3-25 FS","SI-CR-3-25",332,130,332,130,77,30,77,30,99,,"CCGT D1_Integrated Programme Schedule;OEM (Engineering & Deliverables);WHOLE PLANT / GENERAL ACTIVITIES;I&C REALIZATION;Central Control Room Furnitures / Equipment (I&C related)",0,1,0.0,0.0012207528,0.0,0,1.0,0.0000812387,0.0,0.0030769231,0.0,0.0031331593,0.0,0.0,1.0,0.0
1.5.11.1.2-4,SI-CR-4-25,"TRANSPORT TO SITE CCR HMI EQUIPMENT",7112,"CCGTD1_IPS",TT_Task,"61462",-,-,-,100,TK_Complete,20/06/2018,07/10/2018,18/08/2018,12/11/2018,"","","SI-CR-4-42 FS","SI-CR-4-42",151,203,159,208,35,47,37,48,31,,"CCGT D1_Integrated Programme Schedule;OEM (Engineering & Deliverables);WHOLE PLANT / GENERAL ACTIVITIES;I&C REALIZATION;Central Control Room Furnitures / Equipment (I&C related)",0,1,0.0,0.0002034588,0.0,59,1.0,0.0000812387,0.0,0.0030769231,0.0,0.0005221932,0.0,0.1322869955,1.0,0.0
1.5.11.1.2-5,SI-CR-3-80,"(RFS) READY FOR SHIPMENT CCR HMI EQUIPMENT",7112,"CCGTD1_IPS",TT_FinMile,"61462",-,-,-,100,TK_Complete,19/06/2018,23/08/2018,19/06/2018,23/08/2018,"SI-CR-3-25 FS","SI-CR-3-25","","",150,196,150,196,35,45,35,45,30,,"CCGT D1_Integrated Programme Schedule;OEM (Engineering & Deliverables);WHOLE PLANT / GENERAL ACTIVITIES;I&C REALIZATION;Central Control Room Furnitures / Equipment (I&C related)",1,0,0.0,0.0,0.0004069176,0,1.0,0.0000812387,0.0068493151,0.0,0.0,0.0,0.0012870013,0.0,1.0,0.0
1.5.11.1.3,61461,"I&C Cabling for BoP",7112,"CCGTD1_IPS",WBS,"61457",,,,100,Complete,26/09/2017,16/09/2017,18/08/2018,06/08/2018,,,,,112,148,159,194,26,34,37,45,,,"CCGT D1_Integrated Programme Schedule;OEM (Engineering & Deliverables);WHOLE PLANT / GENERAL ACTIVITIES;I&C REALIZATION"
1.5.11.1.3-1,SI-C--4C25,"TRANSPORT TO SITE FOR BOP I&C CABLES",7112,"CCGTD1_IPS",TT_Task,"61461",-,-,-,100,TK_Complete,20/06/2018,01/07/2018,18/08/2018,06/08/2018,"SI-C--3C80 FS","SI-C--3C80","SI-C--4C40 FS","SI-C--4C40",151,189,159,194,35,44,37,45,30,,"CCGT D1_Integrated Programme Schedule;OEM (Engineering & Deliverables);WHOLE PLANT / GENERAL ACTIVITIES;I&C REALIZATION;I&C Cabling for BoP",1,1,0.0000009937,0.0002034588,0.0048830112,59,1.0,0.0001503957,0.0068493151,0.0030769231,0.0015,0.0005221932,0.0154440154,0.1322869955,1.0,0.0283369572
1.5.11.1.3-2,SI-C--4C40,"(OTD-OS) ON SITE BOP I&C CABLES",7112,"CCGTD1_IPS",TT_FinMile,"61461",-,-,-,100,TK_Complete,18/08/2018,06/08/2018,18/08/2018,06/08/2018,"SI-C--4C25 FS","SI-C--4C25","","",159,194,159,194,37,45,37,45,34,,"CCGT D1_Integrated Programme Schedule;OEM (Engineering & Deliverables);WHOLE PLANT / GENERAL ACTIVITIES;I&C REALIZATION;I&C Cabling for BoP",1,0,0.0,0.0,0.00508647,0,1.0,0.0000812387,0.0068493151,0.0,0.0,0.0,0.0160875161,0.0,1.0,0.0
1.5.11.1.3-3,SI-C--3C25,"DETAIL DESIGN, MANUFACTURING, SHOP TEST FOR BOP I&C CABLES",7112,"CCGTD1_IPS",TT_Task,"61461",-,-,-,100,TK_Complete,26/09/2017,16/09/2017,12/02/2018,30/06/2018,"SI-C--2A70 FS,SI-B--4-54 FF","SI-C--2A70,SI-B--4-54","SI--C--3-25# FF,SI--C--3-25# SS,SI-C--3C80 FS,SI1UBA3G80 FS","SI--C--3-25#,SI--C--3-25#,SI-C--3C80,SI1UBA3G80",112,148,132,189,26,34,30,44,12,,"CCGT D1_Integrated Programme Schedule;OEM (Engineering & Deliverables);WHOLE PLANT / GENERAL ACTIVITIES;I&C REALIZATION;I&C Cabling for BoP",2,2,0.0000061554,0.0014242116,0.0044760936,139,0.0,0.0001668279,0.0136986301,0.0061538462,0.0092916667,0.0036553525,0.0141570142,0.3116591928,0.0,0.035070012
1.5.11.1.3-4,SI-C--3C80,"(RFS) READY FOR SHIPMENT BOP I&C CABLES",7112,"CCGTD1_IPS",TT_FinMile,"61461",-,-,-,100,TK_Complete,19/06/2018,30/06/2018,19/06/2018,30/06/2018,"SI-C--3C25 FS","SI-C--3C25","SI-C--4C25 FS","SI-C--4C25",150,189,150,189,35,44,35,44,30,,"CCGT D1_Integrated Programme Schedule;OEM (Engineering & Deliverables);WHOLE PLANT / GENERAL ACTIVITIES;I&C REALIZATION;I&C Cabling for BoP",1,1,0.0000019046,0.0004069176,0.0046795524,0,1.0,0.0000812387,0.0068493151,0.0030769231,0.002875,0.0010443864,0.0148005148,0.0,1.0,0.0
1.5.11.1.4,61460,"Instrumentation (Field Devices)",7112,"CCGTD1_IPS",WBS,"61457",,,,100,Complete,01/06/2017,20/05/2017,18/08/2018,25/08/2018,,,,,96,131,159,197,22,30,37,46,,,"CCGT D1_Integrated Programme Schedule;OEM (Engineering & Deliverables);WHOLE PLANT / GENERAL ACTIVITIES;I&C REALIZATION"
1.5.11.1.4-1,SI-C--3-80,"(RFS) READY FOR SHIPMENT BOP I&C FIELD CABINETS",7112,"CCGTD1_IPS",TT_FinMile,"61460",-,-,-,100,TK_Complete,19/06/2018,06/07/2018,19/06/2018,06/07/2018,"SI-CP-3-25 FS","SI-CP-3-25","SI-CP-4-25 FS","SI-CP-4-25",150,190,150,190,35,44,35,44,30,,"CCGT D1_Integrated Programme Schedule;OEM (Engineering & Deliverables);WHOLE PLANT / GENERAL ACTIVITIES;I&C REALIZATION;Instrumentation (Field Devices)",1,1,0.0000002484,0.0004069176,0.0006103764,0,1.0,0.0000812387,0.0068493151,0.0030769231,0.000375,0.0010443864,0.0019305019,0.0,1.0,0.0
1.5.11.1.4-2,SI-C--4B42,"(OTD-OS) ON SITE BOP I&C FIELD DEVICES AND ERECTION MATERIAL",7112,"CCGTD1_IPS",TT_FinMile,"61460",-,-,-,100,TK_Complete,18/08/2018,25/08/2018,18/08/2018,25/08/2018,"SI-C--4B25 FS","SI-C--4B25","","",159,197,159,197,37,46,37,46,34,,"CCGT D1_Integrated Programme Schedule;OEM (Engineering & Deliverables);WHOLE PLANT / GENERAL ACTIVITIES;I&C REALIZATION;Instrumentation (Field Devices)",1,0,0.0,0.0,0.001017294,0,1.0,0.0000812387,0.0068493151,0.0,0.0,0.0,0.0032175032,0.0,1.0,0.0
1.5.11.1.4-3,SI-CP-4-25,"TRANSPORT TO SITE BOP I&C FIELD CABINETS",7112,"CCGTD1_IPS",TT_Task,"61460",-,-,-,100,TK_Complete,20/06/2018,25/07/2018,18/08/2018,25/08/2018,"SI-C--3-80 FS","SI-C--3-80","SI-CP-4-42 FS","SI-CP-4-42",151,192,159,197,35,44,37,46,30,,"CCGT D1_Integrated Programme Schedule;OEM (Engineering & Deliverables);WHOLE PLANT / GENERAL ACTIVITIES;I&C REALIZATION;Instrumentation (Field Devices)",1,1,0.0000001656,0.0002034588,0.0008138352,59,1.0,0.0001503957,0.0068493151,0.0030769231,0.00025,0.0005221932,0.0025740026,0.1322869955,1.0,0.0283369572
1.5.11.1.4-4,SI-C--4B25,"TRANSPORT TO SITE BOP I&C FIELD DEVICES AND ERECTION MATERIAL",7112,"CCGTD1_IPS",TT_Task,"61460",-,-,-,100,TK_Complete,20/06/2018,25/07/2018,18/08/2018,25/08/2018,"SI-C--3B80 FS","SI-C--3B80","SI-C--4B42 FS","SI-C--4B42",151,192,159,197,35,44,37,46,30,,"CCGT D1_Integrated Programme Schedule;OEM (Engineering & Deliverables);WHOLE PLANT / GENERAL ACTIVITIES;I&C REALIZATION;Instrumentation (Field Devices)",1,1,0.0000001656,0.0002034588,0.0008138352,59,1.0,0.0001503957,0.0068493151,0.0030769231,0.00025,0.0005221932,0.0025740026,0.1322869955,1.0,0.0283369572
1.5.11.1.4-5,SI-CP-4-42,"(OTD-OS) ON SITE BOP I&C FIELD CABINETS",7112,"CCGTD1_IPS",TT_FinMile,"61460",-,-,-,100,TK_Complete,18/08/2018,25/08/2018,18/08/2018,25/08/2018,"SI-CP-4-25 FS","SI-CP-4-25","","",159,197,159,197,37,46,37,46,34,,"CCGT D1_Integrated Programme Schedule;OEM (Engineering & Deliverables);WHOLE PLANT / GENERAL ACTIVITIES;I&C REALIZATION;Instrumentation (Field Devices)",1,0,0.0,0.0,0.001017294,0,1.0,0.0000812387,0.0068493151,0.0,0.0,0.0,0.0032175032,0.0,1.0,0.0
1.5.11.1.4-6,SI-C--3B25,"DETAIL DESIGN, MANUFACTURING, SHOP TEST FOR BOP I&C FIELD DEVICES AND ERECTION MATERIAL",7112,"CCGTD1_IPS",TT_Task,"61460",-,-,-,100,TK_Complete,26/08/2017,29/07/2017,02/03/2018,06/07/2018,"SI-C--2A70 FF","SI-C--2A70","SI1UBA3G80 FS,SI--C--3-25# FF,SI--C--3-25# SS,SI-C--3B80 FS","SI1UBA3G80,SI--C--3-25#,SI--C--3-25#,SI-C--3B80",108,141,135,190,25,32,31,44,10,,"CCGT D1_Integrated Programme Schedule;OEM (Engineering & Deliverables);WHOLE PLANT / GENERAL ACTIVITIES;I&C REALIZATION;Instrumentation (Field Devices)",1,2,0.0000003588,0.0014242116,0.0004069176,188,0.0,0.0001034635,0.0068493151,0.0061538462,0.0005416667,0.0036553525,0.0012870013,0.4215246637,0.0,0.0091065777
1.5.11.1.4-7,SI-CP-3-25,"DETAIL DESIGN, MANUFACTURING, SHOP TEST FOR BOP I&C FIELD CABINETS",7112,"CCGTD1_IPS",TT_Task,"61460",-,-,-,100,TK_Complete,01/06/2017,20/05/2017,14/02/2018,24/07/2018,"SI-C--2A70 FF","SI-C--2A70","SI--C--3-25# SS,SI-C--3-80 FS,SI1UBA3G80 FS,SI--C--3-25# FF","SI--C--3-25#,SI-C--3-80,SI1UBA3G80,SI--C--3-25#",96,131,133,192,22,30,31,44,6,,"CCGT D1_Integrated Programme Schedule;OEM (Engineering & Deliverables);WHOLE PLANT / GENERAL ACTIVITIES;I&C REALIZATION;Instrumentation (Field Devices)",1,2,0.0000003588,0.0014242116,0.0004069176,258,0.0,0.0001117387,0.0068493151,0.0061538462,0.0005416667,0.0036553525,0.0012870013,0.5784753363,0.0,0.0124973247
1.5.11.1.4-8,SI-C--3B80,"(RFS) READY FOR SHIPMENT BOP I&C FIELD DEVICES AND ERECTION MATERIAL",7112,"CCGTD1_IPS",TT_FinMile,"61460",-,-,-,100,TK_Complete,19/06/2018,25/07/2018,19/06/2018,25/07/2018,"SI-C--3B25 FS","SI-C--3B25","SI-C--4B25 FS","SI-C--4B25",150,192,150,192,35,44,35,44,30,,"CCGT D1_Integrated Programme Schedule;OEM (Engineering & Deliverables);WHOLE PLANT / GENERAL ACTIVITIES;I&C REALIZATION;Instrumentation (Field Devices)",1,1,0.0000002484,0.0004069176,0.0006103764,0,1.0,0.0000812387,0.0068493151,0.0030769231,0.000375,0.0010443864,0.0019305019,0.0,1.0,0.0
1.5.11.1.5,61459,"Manufacturing I&C BOP Cabinet (Requried for Shop Test) / I&C for UQA Electrical Room",7112,"CCGTD1_IPS",WBS,"61457",,,,100,Complete,21/06/2017,21/05/2017,04/03/2018,22/01/2018,,,,,99,131,135,166,23,30,31,38,,,"CCGT D1_Integrated Programme Schedule;OEM (Engineering & Deliverables);WHOLE PLANT / GENERAL ACTIVITIES;I&C REALIZATION"
1.5.11.1.5-1,SI1CJ-3-25,"MANUFACTURING BOP I&C CABINETS FOR PLANT SHOP TEST AND I&C FOR UQA ELEC. ROOM",7112,"CCGTD1_IPS",TT_Task,"61459",-,-,-,100,TK_Complete,27/09/2017,14/09/2017,26/12/2017,25/12/2017,"SI1CJ-2-50 FS,SI-BF-2-55 FF","SI1CJ-2-50,SI-BF-2-55","SI1CJ-3-80 FS","SI1CJ-3-80",113,147,125,162,26,34,29,37,12,,"CCGT D1_Integrated Programme Schedule;OEM (Engineering & Deliverables);WHOLE PLANT / GENERAL ACTIVITIES;I&C REALIZATION;Manufacturing I&C BOP Cabinet (Requried for Shop Test) / I&C for UQA Electrical Room",2,1,0.0000052169,0.0016276704,0.0056968464,90,0.0,0.0002195528,0.0136986301,0.0030769231,0.007875,0.0041775457,0.018018018,0.201793722,0.0,0.0566739144
1.5.11.1.5-2,SI1CJ-2-50,"(DF) BOP I&C HARDWARE FOR PLANT SHOP TEST AND I&C FOR UQA ELEC. ROOM",7112,"CCGTD1_IPS",TT_FinMile,"61459",-,-,-,100,TK_Complete,26/09/2017,08/09/2017,26/09/2017,08/09/2017,"SI1CJ-3-20 FS,SI-3412-09 FS","SI1CJ-3-20,SI-3412-09","SI1CJ-3-25 FS","SI1CJ-3-25",112,147,112,147,26,34,26,34,12,,"CCGT D1_Integrated Programme Schedule;OEM (Engineering & Deliverables);WHOLE PLANT / GENERAL ACTIVITIES;I&C REALIZATION;Manufacturing I&C BOP Cabinet (Requried for Shop Test) / I&C for UQA Electrical Room",2,1,0.0000021116,0.0018311292,0.0044760936,0,1.0,0.0000812387,0.0136986301,0.0030769231,0.0031875,0.0046997389,0.0141570142,0.0,1.0,0.0
1.5.11.1.5-3,SI1CJ-3-80,"(RFS) READY FOR SHIPMENT BOP I&C CABINETS FOR PLANT SHOP TEST AND I&C FOR UQA ELEC. ROOM",7112,"CCGTD1_IPS",TT_FinMile,"61459",-,-,-,100,TK_Complete,18/02/2018,08/01/2018,18/02/2018,08/01/2018,"SI1CJ-3-25 FS","SI1CJ-3-25","SI1CJ-4-25 FS","SI1CJ-4-25",133,164,133,164,31,38,31,38,18,,"CCGT D1_Integrated Programme Schedule;OEM (Engineering & Deliverables);WHOLE PLANT / GENERAL ACTIVITIES;I&C REALIZATION;Manufacturing I&C BOP Cabinet (Requried for Shop Test) / I&C for UQA Electrical Room",1,1,0.0000043474,0.0014242116,0.0059003052,0,1.0,0.0000812387,0.0068493151,0.0030769231,0.0065625,0.0036553525,0.0186615187,0.0,1.0,0.0
1.5.11.1.5-4,SI1CJ-3-20,"DETAIL DESIGN HW ENGINEERING BOP I&C CABINETS FOR PLANT SHOP TEST AND I&C FOR UQA ELEC. ROOM",7112,"CCGTD1_IPS",TT_Task,"61459",-,-,-,100,TK_Complete,21/06/2017,21/05/2017,26/09/2017,26/08/2017,"SI-C--2C55 FF","SI-C--2C55","SI1CJ-2-50 FS","SI1CJ-2-50",99,131,112,145,23,30,26,33,7,,"CCGT D1_Integrated Programme Schedule;OEM (Engineering & Deliverables);WHOLE PLANT / GENERAL ACTIVITIES;I&C REALIZATION;Manufacturing I&C BOP Cabinet (Requried for Shop Test) / I&C for UQA Electrical Room",1,1,0.0000024014,0.002034588,0.0042726348,97,1.0,0.0001503957,0.0068493151,0.0030769231,0.003625,0.0052219321,0.0135135135,0.2174887892,1.0,0.0283369572
1.5.11.1.5-5,SI1CJ-4-25,"TRANSPORT TO WORKSHOP BOP I&C CABINETS FOR PLANT SHOP TEST AND I&C FOR UQA ELEC. ROOM",7112,"CCGTD1_IPS",TT_Task,"61459",-,-,-,100,TK_Complete,19/02/2018,09/01/2018,04/03/2018,22/01/2018,"SI1CJ-3-80 FS","SI1CJ-3-80","SI1UBA3G58 FS","SI1UBA3G58",133,164,135,166,31,38,31,38,18,,"CCGT D1_Integrated Programme Schedule;OEM (Engineering & Deliverables);WHOLE PLANT / GENERAL ACTIVITIES;I&C REALIZATION;Manufacturing I&C BOP Cabinet (Requried for Shop Test) / I&C for UQA Electrical Room",1,1,0.0000033951,0.0012207528,0.006103764,13,1.0,0.0001503957,0.0068493151,0.0030769231,0.005125,0.0031331593,0.0193050193,0.0291479821,1.0,0.0283369572
1.5.11.1.6,61458,"Automation General Activities",7112,"CCGTD1_IPS",WBS,"61457",,,,100,Complete,22/10/2017,22/09/2017,22/10/2017,22/09/2017,,,,,116,149,116,149,27,34,27,34,,,"CCGT D1_Integrated Programme Schedule;OEM (Engineering & Deliverables);WHOLE PLANT / GENERAL ACTIVITIES;I&C REALIZATION"
1.5.11.1.6-1,SI-C--2-55,"(ICSY3) FINAL LOGICS AND HMI GRAPHICS",7112,"CCGTD1_IPS",TT_FinMile,"61458",-,-,-,100,TK_Complete,22/10/2017,22/09/2017,22/10/2017,22/09/2017,"SI-C--2-50 FS,SI-G--2-70 FS,SI-L--2-70 FS,SI-P--2-70 FS,SI1HA-2-70 FS,SI-3412-09 FS","SI-C--2-50,SI-G--2-70,SI-L--2-70,SI-P--2-70,SI1HA-2-70,SI-3412-09","SI-C--2B35 FF","SI-C--2B35",116,149,116,149,27,34,27,34,13,,"CCGT D1_Integrated Programme Schedule;OEM (Engineering & Deliverables);WHOLE PLANT / GENERAL ACTIVITIES;I&C REALIZATION;Automation General Activities",6,1,0.0000126696,0.0018311292,0.007121058,0,1.0,0.0000812387,0.0410958904,0.0030769231,0.019125,0.0046997389,0.0225225225,0.0,1.0,0.0
1.5.11.2,61454,"AUTOMATION (DELTA ENGINEERING)",7112,"CCGTD1_IPS",WBS,"61412",,,,100,Complete,03/11/2016,03/11/2016,26/03/2018,24/03/2018,,,,,66,102,138,175,15,24,32,40,,,"CCGT D1_Integrated Programme Schedule;OEM (Engineering & Deliverables);WHOLE PLANT / GENERAL ACTIVITIES"
1.5.11.2.1,61456,"Automation I&C Unit Coordination",7112,"CCGTD1_IPS",WBS,"61454",,,,100,Complete,25/08/2017,02/08/2017,26/10/2017,24/01/2018,,,,,108,141,117,166,25,33,27,38,,,"CCGT D1_Integrated Programme Schedule;OEM (Engineering & Deliverables);WHOLE PLANT / GENERAL ACTIVITIES;AUTOMATION (DELTA ENGINEERING)"
1.5.11.2.1-1,SI-CJJ2-38,"ST INPUT FOR I&C UNIT COORDINATION",7112,"CCGTD1_IPS",TT_FinMile,"61456",-,-,-,100,TK_Complete,25/08/2017,02/08/2017,25/08/2017,02/08/2017,"","","SI-C--2-40# FS,SI-C--2B41 FS","SI-C--2-40#,SI-C--2B41",108,141,108,141,25,33,25,33,10,,"CCGT D1_Integrated Programme Schedule;OEM (Engineering & Deliverables);WHOLE PLANT / GENERAL ACTIVITIES;AUTOMATION (DELTA ENGINEERING);Automation I&C Unit Coordination",0,1,0.0,0.0014242116,0.0,0,1.0,0.0000812387,0.0,0.0030769231,0.0,0.0036553525,0.0,0.0,1.0,0.0
1.5.11.2.1-2,SI-CJP2-38,"GT INPUT FOR I&C UNIT COORDINATION",7112,"CCGTD1_IPS",TT_FinMile,"61456",-,-,-,100,TK_Complete,25/08/2017,17/08/2017,25/08/2017,17/08/2017,"","","SI-C--2-40# FS,SI-C--2B41 FS","SI-C--2-40#,SI-C--2B41",108,143,108,143,25,33,25,33,10,,"CCGT D1_Integrated Programme Schedule;OEM (Engineering & Deliverables);WHOLE PLANT / GENERAL ACTIVITIES;AUTOMATION (DELTA ENGINEERING);Automation I&C Unit Coordination",0,1,0.0,0.0014242116,0.0,0,1.0,0.0000812387,0.0,0.0030769231,0.0,0.0036553525,0.0,0.0,1.0,0.0
1.5.11.2.2,61455,"Automation General Activities",7112,"CCGTD1_IPS",WBS,"61454",,,,100,Complete,03/11/2016,03/11/2016,26/03/2018,24/03/2018,,,,,66,102,138,175,15,24,32,40,,,"CCGT D1_Integrated Programme Schedule;OEM (Engineering & Deliverables);WHOLE PLANT / GENERAL ACTIVITIES;AUTOMATION (DELTA ENGINEERING)"
1.5.11.2.2-1,SI-C--2C50,"(ICBB2) PRELIMINARY MEASUREMENT LIST, SIGNAL LIST AND BB INTERFACE SHEETS",7112,"CCGTD1_IPS",TT_FinMile,"61455",-,-,-,100,TK_Complete,15/03/2017,01/03/2017,15/03/2017,01/03/2017,"SI----2C00 FS","SI----2C00","SI-C--2C55 FS","SI-C--2C55",85,119,85,119,19,27,19,27,3,,"CCGT D1_Integrated Programme Schedule;OEM (Engineering & Deliverables);WHOLE PLANT / GENERAL ACTIVITIES;AUTOMATION (DELTA ENGINEERING);Automation General Activities",1,1,0.0000001242,0.0024415056,0.0002034588,0,1.0,0.0000812387,0.0068493151,0.0030769231,0.0001875,0.0062663185,0.0006435006,0.0,1.0,0.0
1.5.11.2.2-2,SI-C--2C55,"(ICBB3) FINAL MEASUREMENT LIST, SIGNAL LIST AND BB INTERFACE SHEETS",7112,"CCGTD1_IPS",TT_FinMile,"61455",-,-,-,100,TK_Complete,25/08/2017,29/07/2017,25/08/2017,29/07/2017,"SI-G--2-28# FS,SI-C--2C50 FS,SI-L--2-28# FS,SI-B--2A55 FS,SI-P--2-28 FS","SI-G--2-28#,SI-C--2C50,SI-L--2-28#,SI-B--2A55,SI-P--2-28","SI1CJ-3-20 FF","SI1CJ-3-20",108,141,108,141,25,32,25,32,10,,"CCGT D1_Integrated Programme Schedule;OEM (Engineering & Deliverables);WHOLE PLANT / GENERAL ACTIVITIES;AUTOMATION (DELTA ENGINEERING);Automation General Activities",3,1,0.0000028155,0.0022380468,0.004069176,0,1.0,0.0000812387,0.0205479452,0.0030769231,0.00425,0.0057441253,0.0128700129,0.0,1.0,0.0
1.5.11.2.2-3,SI-C--2B40,"(DF) T3000 DB",7112,"CCGTD1_IPS",TT_FinMile,"61455",-,-,-,100,TK_Complete,25/02/2018,24/01/2018,25/02/2018,24/01/2018,"SI-C--2B35 FS","SI-C--2B35","SI-C--2B41 FS","SI-C--2B41",134,166,134,166,31,38,31,38,18,,"CCGT D1_Integrated Programme Schedule;OEM (Engineering & Deliverables);WHOLE PLANT / GENERAL ACTIVITIES;AUTOMATION (DELTA ENGINEERING);Automation General Activities",1,1,0.0,0.0014242116,0.0077314344,0,1.0,0.0000812387,0.0068493151,0.0030769231,0.0,0.0036553525,0.0244530245,0.0,1.0,0.0
1.5.11.2.2-4,SI-C--2B35,"SW ENGINEERING BOP I&C, T3000 DB MERGING",7112,"CCGTD1_IPS",TT_Task,"61455",-,-,-,100,TK_Complete,01/05/2017,07/04/2017,19/11/2017,24/01/2018,"SI-C--2B00 FS,SI-C--2-55 FF","SI-C--2B00,SI-C--2-55","SI-C--2-30# SS,SI-C--2B41 FS,SI-C--2-30# FF,SI-C--2-40# FF,SI-C--2B40 FS","SI-C--2-30#,SI-C--2B41,SI-C--2-30#,SI-C--2-40#,SI-C--2B40",91,125,120,166,21,29,28,38,4,,"CCGT D1_Integrated Programme Schedule;OEM (Engineering & Deliverables);WHOLE PLANT / GENERAL ACTIVITIES;AUTOMATION (DELTA ENGINEERING);Automation General Activities",2,2,0.0000118829,0.0016276704,0.0075279756,202,0.0,0.0002195528,0.0136986301,0.0061538462,0.0179375,0.0041775457,0.0238095238,0.4529147982,0.0,0.0566739144
1.5.11.2.2-5,SI-C--2A40,"HW ENGINEERING BOP I&C",7112,"CCGTD1_IPS",TT_Task,"61455",-,-,-,100,TK_Complete,15/02/2017,02/02/2017,26/09/2017,13/09/2017,"","","SI-C--2-30# FF,SI-C--2-30# SS,SI-C--2A70 FS","SI-C--2-30#,SI-C--2-30#,SI-C--2A70",81,115,112,147,18,27,26,34,2,,"CCGT D1_Integrated Programme Schedule;OEM (Engineering & Deliverables);WHOLE PLANT / GENERAL ACTIVITIES;AUTOMATION (DELTA ENGINEERING);Automation General Activities",0,1,0.0,0.0034587996,0.0,223,1.0,0.0000812387,0.0,0.0030769231,0.0,0.0088772846,0.0,0.5,1.0,0.0
1.5.11.2.2-6,SI-C--2B41,"SW ENGINEERING BOP I&C, T3000 DB MERGING, PROXIE GENERATION",7112,"CCGTD1_IPS",TT_Task,"61455",-,-,-,100,TK_Complete,26/01/2018,25/01/2018,08/03/2018,24/03/2018,"SI-C--2B40 FS,SI-C--2B35 FS,SI-CJJ2-38 FS,SI-CJP2-38 FS","SI-C--2B40,SI-C--2B35,SI-CJJ2-38,SI-CJP2-38","SI-C--2B70 FS,SI-C--2-30# FF,SI-C--2-30# SS","SI-C--2B70,SI-C--2-30#,SI-C--2-30#",130,166,136,175,30,38,31,40,17,,"CCGT D1_Integrated Programme Schedule;OEM (Engineering & Deliverables);WHOLE PLANT / GENERAL ACTIVITIES;AUTOMATION (DELTA ENGINEERING);Automation General Activities",4,1,0.0000098127,0.0012207528,0.0083418108,41,0.0,0.0004755634,0.0273972603,0.0030769231,0.0148125,0.0031331593,0.0263835264,0.0919282511,0.0,0.1615737942
1.5.11.2.2-7,SI-C--2B70,"HANDOVER T3000 DB FOR TEST",7112,"CCGTD1_IPS",TT_FinMile,"61455",-,-,-,100,TK_Complete,26/03/2018,24/03/2018,26/03/2018,24/03/2018,"SI-C--2B41 FS","SI-C--2B41","SI1UBA3G60 FS","SI1UBA3G60",138,175,138,175,32,40,32,40,23,,"CCGT D1_Integrated Programme Schedule;OEM (Engineering & Deliverables);WHOLE PLANT / GENERAL ACTIVITIES;AUTOMATION (DELTA ENGINEERING);Automation General Activities",1,1,0.0000083222,0.001017294,0.0085452696,0,1.0,0.0000812387,0.0068493151,0.0030769231,0.0125625,0.0026109661,0.027027027,0.0,1.0,0.0
1.5.11.2.2-8,SI-C--2-15,"BASIC DESIGN, SPECIFICATION BOP I&C",7112,"CCGTD1_IPS",TT_Task,"61455",-,-,-,100,TK_Complete,03/11/2016,03/11/2016,18/01/2017,18/01/2017,"SI----2C00 FS","SI----2C00","","",66,102,77,113,15,24,17,26,0,,"CCGT D1_Integrated Programme Schedule;OEM (Engineering & Deliverables);WHOLE PLANT / GENERAL ACTIVITIES;AUTOMATION (DELTA ENGINEERING);Automation General Activities",1,0,0.0,0.0,0.0002034588,76,1.0,0.0000883994,0.0068493151,0.0,0.0,0.0,0.0006435006,0.1704035874,1.0,0.0029340719
1.5.11.2.2-9,SI-C--2A70,"(DF) BOP I&C HW FOR FIELD EQUIPMENT AND CABINETS",7112,"CCGTD1_IPS",TT_FinMile,"61455",-,-,-,100,TK_Complete,25/09/2017,13/09/2017,25/09/2017,13/09/2017,"SI-HA-2-28# FS,SI-C--2A40 FS","SI-HA-2-28#,SI-C--2A40","SI-C--3C25 FS,SI-C--3B25 FF,SI-CP-3-25 FF","SI-C--3C25,SI-C--3B25,SI-CP-3-25",112,147,112,147,26,34,26,34,11,,"CCGT D1_Integrated Programme Schedule;OEM (Engineering & Deliverables);WHOLE PLANT / GENERAL ACTIVITIES;AUTOMATION (DELTA ENGINEERING);Automation General Activities",1,3,0.0000006625,0.0032553408,0.0002034588,0,1.0,0.0000812387,0.0068493151,0.0092307692,0.001,0.0083550914,0.0006435006,0.0,1.0,0.0
1.5.11.2.2-10,SI-C--2B00,"SETUP T3000 DB",7112,"CCGTD1_IPS",TT_Mile,"61455",-,-,-,100,TK_Complete,01/05/2017,07/04/2017,01/05/2017,07/04/2017,"","","SI-C--2B35 FS","SI-C--2B35",91,125,91,125,21,29,21,29,4,,"CCGT D1_Integrated Programme Schedule;OEM (Engineering & Deliverables);WHOLE PLANT / GENERAL ACTIVITIES;AUTOMATION (DELTA ENGINEERING);Automation General Activities",0,1,0.0,0.0018311292,0.0,0,1.0,0.0000812387,0.0,0.0030769231,0.0,0.0046997389,0.0,0.0,1.0,0.0
1.5.11.2.2-11,SI-C--2-50,"(ICSY2) PRELIMINARY FUNCTION DESCRIPTIONS, LOGICS AND HMI GRAPHICS",7112,"CCGTD1_IPS",TT_FinMile,"61455",-,-,-,100,TK_Complete,28/08/2017,27/07/2017,28/08/2017,27/07/2017,"","","SI-C--2-55 FS","SI-C--2-55",108,140,108,140,25,32,25,32,11,,"CCGT D1_Integrated Programme Schedule;OEM (Engineering & Deliverables);WHOLE PLANT / GENERAL ACTIVITIES;AUTOMATION (DELTA ENGINEERING);Automation General Activities",0,1,0.0,0.002034588,0.0,0,1.0,0.0000812387,0.0,0.0030769231,0.0,0.0052219321,0.0,0.0,1.0,0.0
1.5.11.3,61449,"SYSTEM ENGINEERING (DELTA ENGINEERING)",7112,"CCGTD1_IPS",WBS,"61412",,,,100,Complete,30/09/2016,11/06/2016,26/01/2018,12/10/2017,,,,,61,82,130,151,14,19,30,35,,,"CCGT D1_Integrated Programme Schedule;OEM (Engineering & Deliverables);WHOLE PLANT / GENERAL ACTIVITIES"
1.5.11.3.1,61453,"G - Systems Engineering Process",7112,"CCGTD1_IPS",WBS,"61449",,,,100,Complete,03/11/2016,03/11/2016,09/11/2017,12/10/2017,,,,,66,102,119,151,15,24,27,35,,,"CCGT D1_Integrated Programme Schedule;OEM (Engineering & Deliverables);WHOLE PLANT / GENERAL ACTIVITIES;SYSTEM ENGINEERING (DELTA ENGINEERING)"
1.5.11.3.1-1,SI-G--2-30,"REVISION P&IDs AFTER 3D DRV G-/S-/MBU20",7112,"CCGTD1_IPS",TT_Task,"61453",-,-,-,100,TK_Complete,27/10/2017,27/09/2017,09/11/2017,12/10/2017,"","","SI-G--2-50 FS","SI-G--2-50",117,149,119,151,27,34,27,35,13,,"CCGT D1_Integrated Programme Schedule;OEM (Engineering & Deliverables);WHOLE PLANT / GENERAL ACTIVITIES;SYSTEM ENGINEERING (DELTA ENGINEERING);G - Systems Engineering Process",0,1,0.0,0.0002034588,0.0,13,0.8,0.0000812387,0.0,0.0030769231,0.0,0.0005221932,0.0,0.0291479821,0.8,0.0
1.5.11.3.1-2,SI-G--2A05,"PREPARATION P&IDs GHD/GKB/SCB - SYSTEMS (FIRST ISSUE)",7112,"CCGTD1_IPS",TT_Task,"61453",-,-,-,100,TK_Complete,10/12/2016,17/11/2016,18/02/2017,09/01/2017,"","","SI-G--2-75 FS","SI-G--2-75",71,104,81,112,16,24,19,26,1,,"CCGT D1_Integrated Programme Schedule;OEM (Engineering & Deliverables);WHOLE PLANT / GENERAL ACTIVITIES;SYSTEM ENGINEERING (DELTA ENGINEERING);G - Systems Engineering Process",0,1,0.0,0.0026449644,0.0,70,1.0,0.0000812387,0.0,0.0030769231,0.0,0.0067885117,0.0,0.1569506726,1.0,0.0
1.5.11.3.1-3,SI-G--2-35,"DESIGN DATA SHEETS G-/MBU20 - COMPONENTS",7112,"CCGTD1_IPS",TT_Task,"61453",-,-,-,100,TK_Complete,03/11/2016,03/11/2016,09/02/2017,09/02/2017,"SI----2C00 FS","SI----2C00","SI-G--2-70# SS,SI-G--2B45 FS,SI-G--2A45 FS","SI-G--2-70#,SI-G--2B45,SI-G--2A45",66,102,80,116,15,24,18,27,0,,"CCGT D1_Integrated Programme Schedule;OEM (Engineering & Deliverables);WHOLE PLANT / GENERAL ACTIVITIES;SYSTEM ENGINEERING (DELTA ENGINEERING);G - Systems Engineering Process",1,2,0.000000414,0.003051882,0.0002034588,98,1.0,0.0000904722,0.0068493151,0.0061538462,0.000625,0.0078328982,0.0006435006,0.2197309417,1.0,0.0037834085
1.5.11.3.1-4,SI-G--2A45,"DESIGN DATA SHEETS FOR ALL G-/MBU20 - COMPONENTS AVAILABLE",7112,"CCGTD1_IPS",TT_FinMile,"61453",-,-,-,100,TK_Complete,14/02/2017,09/02/2017,14/02/2017,09/02/2017,"SI-G--2-35 FS","SI-G--2-35","SI-G--2-75 FS","SI-G--2-75",80,116,80,116,18,27,18,27,2,,"CCGT D1_Integrated Programme Schedule;OEM (Engineering & Deliverables);WHOLE PLANT / GENERAL ACTIVITIES;SYSTEM ENGINEERING (DELTA ENGINEERING);G - Systems Engineering Process",1,1,0.0000008695,0.0026449644,0.0004069176,0,1.0,0.0000812387,0.0068493151,0.0030769231,0.0013125,0.0067885117,0.0012870013,0.0,1.0,0.0
1.5.11.3.1-5,SI-G--2-75,"DESIGN REVIEW INCL. SIL-STUDY G-/S-/MBU20-SYSTEMS",7112,"CCGTD1_IPS",TT_Task,"61453",-,-,-,100,TK_Complete,16/03/2017,14/03/2017,26/04/2017,24/04/2017,"SI-G--2-10 FS,SI-G--2A05 FS,SI-G--2A45 FS","SI-G--2-10,SI-G--2A05,SI-G--2A45","SI-G--2-65 FS","SI-G--2-65",85,121,91,127,19,28,21,29,3,,"CCGT D1_Integrated Programme Schedule;OEM (Engineering & Deliverables);WHOLE PLANT / GENERAL ACTIVITIES;SYSTEM ENGINEERING (DELTA ENGINEERING);G - Systems Engineering Process",3,1,0.0000027741,0.0024415056,0.0012207528,41,1.0,0.0003475581,0.0205479452,0.0030769231,0.0041875,0.0062663185,0.0038610039,0.0919282511,1.0,0.1091238543
1.5.11.3.1-6,SI-G--2-65,"(DF) PROCESS FINAL G-/S-/MBU20 -SYSTEM",7112,"CCGTD1_IPS",TT_FinMile,"61453",-,-,-,100,TK_Complete,30/04/2017,24/04/2017,30/04/2017,24/04/2017,"SI-G--2-75 FS","SI-G--2-75","SI-G--2-70# FF,SI-G--2-28# FS,SI-G--2-70 FS","SI-G--2-70#,SI-G--2-28#,SI-G--2-70",91,127,91,127,21,29,21,29,4,,"CCGT D1_Integrated Programme Schedule;OEM (Engineering & Deliverables);WHOLE PLANT / GENERAL ACTIVITIES;SYSTEM ENGINEERING (DELTA ENGINEERING);G - Systems Engineering Process",1,1,0.0000029811,0.0022380468,0.0014242116,0,1.0,0.0000812387,0.0068493151,0.0030769231,0.0045,0.0057441253,0.0045045045,0.0,1.0,0.0
1.5.11.3.1-7,SI-G--2-50,"(DF) MECHANICAL ENGINEERING, PLANT LAYOUT G-/S-/MBU20-SYSTEMS",7112,"CCGTD1_IPS",TT_FinMile,"61453",-,-,-,100,TK_Complete,09/11/2017,12/10/2017,09/11/2017,12/10/2017,"SI-G--2-30 FS","SI-G--2-30","","",119,151,119,151,27,35,27,35,14,,"CCGT D1_Integrated Programme Schedule;OEM (Engineering & Deliverables);WHOLE PLANT / GENERAL ACTIVITIES;SYSTEM ENGINEERING (DELTA ENGINEERING);G - Systems Engineering Process",1,0,0.0,0.0,0.0002034588,0,1.0,0.0000812387,0.0068493151,0.0,0.0,0.0,0.0006435006,0.0,1.0,0.0
1.5.11.3.1-8,SI-G--2-10,"ENGINEERING P&IDs, SYSTEM DESCRIPTION G-/S-/MBU20 - SYSTEMS",7112,"CCGTD1_IPS",TT_Task,"61453",-,-,-,100,TK_Complete,03/02/2017,27/12/2016,20/04/2017,13/03/2017,"SI-G--2-05 FS","SI-G--2-05","SI-G--2-75 FS","SI-G--2-75",79,110,90,121,18,25,21,28,2,,"CCGT D1_Integrated Programme Schedule;OEM (Engineering & Deliverables);WHOLE PLANT / GENERAL ACTIVITIES;SYSTEM ENGINEERING (DELTA ENGINEERING);G - Systems Engineering Process",1,1,0.0000005383,0.0026449644,0.0002034588,76,1.0,0.0001503957,0.0068493151,0.0030769231,0.0008125,0.0067885117,0.0006435006,0.1704035874,1.0,0.0283369572
1.5.11.3.1-9,SI-G--2-05,"PREPARATION P&IDs GA-/GHC/GM-/MBU20 - SYSTEMS (FIRST ISSUE) AND WATER BALANCE",7112,"CCGTD1_IPS",TT_Task,"61453",-,-,-,100,TK_Complete,10/12/2016,17/11/2016,21/01/2017,26/12/2016,"","","SI-G--2-10 FS","SI-G--2-10",71,104,77,110,16,24,18,25,1,,"CCGT D1_Integrated Programme Schedule;OEM (Engineering & Deliverables);WHOLE PLANT / GENERAL ACTIVITIES;SYSTEM ENGINEERING (DELTA ENGINEERING);G - Systems Engineering Process",0,1,0.0,0.0028484232,0.0,42,1.0,0.0000812387,0.0,0.0030769231,0.0,0.007310705,0.0,0.0941704036,1.0,0.0
1.5.11.3.1-10,SI-G--2-70,"(DF) I&C DATA G/-S-/MBU20-SYSTEMS",7112,"CCGTD1_IPS",TT_FinMile,"61453",-,-,-,100,TK_Complete,08/10/2017,07/09/2017,08/10/2017,07/09/2017,"SI-G--2-65 FS","SI-G--2-65","SI-C--2-55 FS","SI-C--2-55",114,146,114,146,26,34,26,34,12,,"CCGT D1_Integrated Programme Schedule;OEM (Engineering & Deliverables);WHOLE PLANT / GENERAL ACTIVITIES;SYSTEM ENGINEERING (DELTA ENGINEERING);G - Systems Engineering Process",1,1,0.0000031053,0.002034588,0.0016276704,0,1.0,0.0000812387,0.0068493151,0.0030769231,0.0046875,0.0052219321,0.0051480051,0.0,1.0,0.0
1.5.11.3.1-11,SI-G--2B45,"DESIGN DATA SHEETS SAFETY, CONTROL VALVES G-, MBU2-SYSTEMS",7112,"CCGTD1_IPS",TT_FinMile,"61453",-,-,-,100,TK_Complete,14/02/2017,09/02/2017,14/02/2017,09/02/2017,"SI-G--2-35 FS","SI-G--2-35","","",80,116,80,116,18,27,18,27,2,,"CCGT D1_Integrated Programme Schedule;OEM (Engineering & Deliverables);WHOLE PLANT / GENERAL ACTIVITIES;SYSTEM ENGINEERING (DELTA ENGINEERING);G - Systems Engineering Process",1,0,0.0,0.0,0.0004069176,0,1.0,0.0000812387,0.0068493151,0.0,0.0,0.0,0.0012870013,0.0,1.0,0.0
1.5.11.3.2,61452,"P - Systems Engineering Process",7112,"CCGTD1_IPS",WBS,"61449",,,,100,Complete,26/11/2016,03/11/2016,01/11/2017,29/09/2017,,,,,69,102,118,150,16,24,27,35,,,"CCGT D1_Integrated Programme Schedule;OEM (Engineering & Deliverables);WHOLE PLANT / GENERAL ACTIVITIES;SYSTEM ENGINEERING (DELTA ENGINEERING)"
1.5.11.3.2-1,SI-P--2-70,"(DF) I&C DATA P-SYSTEMS",7112,"CCGTD1_IPS",TT_FinMile,"61452",-,-,-,100,TK_Complete,25/09/2017,25/08/2017,25/09/2017,25/08/2017,"SI-P--2-28 FS","SI-P--2-28","SI-C--2-55 FS","SI-C--2-55",112,145,112,145,26,33,26,33,11,,"CCGT D1_Integrated Programme Schedule;OEM (Engineering & Deliverables);WHOLE PLANT / GENERAL ACTIVITIES;SYSTEM ENGINEERING (DELTA ENGINEERING);P - Systems Engineering Process",1,1,0.0000020702,0.002034588,0.0012207528,0,1.0,0.0000812387,0.0068493151,0.0030769231,0.003125,0.0052219321,0.0038610039,0.0,1.0,0.0
1.5.11.3.2-2,SI-P--2-45,"DESIGN DATA SHEETS FOR ALL P-COMPONENTS AVAILABLE",7112,"CCGTD1_IPS",TT_FinMile,"61452",-,-,-,100,TK_Complete,28/02/2017,15/02/2017,28/02/2017,15/02/2017,"SI-P--2-35 FS","SI-P--2-35","SI-P--2-75 FS","SI-P--2-75",82,117,82,117,19,27,19,27,2,,"CCGT D1_Integrated Programme Schedule;OEM (Engineering & Deliverables);WHOLE PLANT / GENERAL ACTIVITIES;SYSTEM ENGINEERING (DELTA ENGINEERING);P - Systems Engineering Process",1,1,0.0000010351,0.0042726348,0.0004069176,0,1.0,0.0000812387,0.0068493151,0.0030769231,0.0015625,0.0109660574,0.0012870013,0.0,1.0,0.0
1.5.11.3.2-3,SI-P--2-75,"DESIGN REVIEW INCL. SIL-STUDY P-SYSTEMS",7112,"CCGTD1_IPS",TT_Task,"61452",-,-,-,100,TK_Complete,01/03/2017,17/02/2017,04/04/2017,10/03/2017,"SI-P--2-45 FS","SI-P--2-45","SI-P--2-65 FS","SI-P--2-65",83,118,87,121,19,27,20,28,3,,"CCGT D1_Integrated Programme Schedule;OEM (Engineering & Deliverables);WHOLE PLANT / GENERAL ACTIVITIES;SYSTEM ENGINEERING (DELTA ENGINEERING);P - Systems Engineering Process",1,1,0.0000017804,0.004069176,0.0006103764,34,1.0,0.0001503957,0.0068493151,0.0030769231,0.0026875,0.0104438642,0.0019305019,0.0762331839,1.0,0.0283369572
1.5.11.3.2-4,SI-P--2-28,"SUMMARY DATA MANAGEMENT P-SYSTEMS",7112,"CCGTD1_IPS",TT_Task,"61452",-,-,-,100,TK_Complete,01/04/2017,11/03/2017,12/08/2017,29/07/2017,"SI-P--2-65 FS","SI-P--2-65","SI-P--2-70 FS,SI-C--2C55 FS","SI-P--2-70,SI-C--2C55",87,121,106,141,20,28,24,32,4,,"CCGT D1_Integrated Programme Schedule;OEM (Engineering & Deliverables);WHOLE PLANT / GENERAL ACTIVITIES;SYSTEM ENGINEERING (DELTA ENGINEERING);P - Systems Engineering Process",1,2,0.0000030225,0.0036622584,0.001017294,133,0.4,0.0001503957,0.0068493151,0.0061538462,0.0045625,0.0093994778,0.0032175032,0.298206278,0.4,0.0283369572
1.5.11.3.2-5,SI-P--2-65,"(DF) PROCESS FINAL P-SYSTEMS",7112,"CCGTD1_IPS",TT_FinMile,"61452",-,-,-,100,TK_Complete,08/04/2017,10/03/2017,08/04/2017,10/03/2017,"SI-P--2-75 FS","SI-P--2-75","SI-P--2-28 FS,SI-P--2-70# FF","SI-P--2-28,SI-P--2-70#",88,121,88,121,20,28,20,28,4,,"CCGT D1_Integrated Programme Schedule;OEM (Engineering & Deliverables);WHOLE PLANT / GENERAL ACTIVITIES;SYSTEM ENGINEERING (DELTA ENGINEERING);P - Systems Engineering Process",1,1,0.0000024428,0.0038657172,0.0008138352,0,1.0,0.0000812387,0.0068493151,0.0030769231,0.0036875,0.009921671,0.0025740026,0.0,1.0,0.0
1.5.11.3.2-6,SI-P--2-50,"(DF) MECHANICAL ENGINEERING, PLANT LAYOUT P-SYSTEMS",7112,"CCGTD1_IPS",TT_FinMile,"61452",-,-,-,100,TK_Complete,01/11/2017,29/09/2017,01/11/2017,29/09/2017,"SI-P--2-30 FS","SI-P--2-30","","",118,150,118,150,27,35,27,35,13,,"CCGT D1_Integrated Programme Schedule;OEM (Engineering & Deliverables);WHOLE PLANT / GENERAL ACTIVITIES;SYSTEM ENGINEERING (DELTA ENGINEERING);P - Systems Engineering Process",1,0,0.0,0.0,0.0002034588,0,1.0,0.0000812387,0.0068493151,0.0,0.0,0.0,0.0006435006,0.0,1.0,0.0
1.5.11.3.2-7,SI-P--2-30,"REVISION P&IDs AFTER 3D DRV P-SYSTEM",7112,"CCGTD1_IPS",TT_Task,"61452",-,-,-,100,TK_Complete,26/09/2017,05/09/2017,23/10/2017,29/09/2017,"","","SI-P--2-50 FS","SI-P--2-50",112,146,116,150,26,34,27,35,12,,"CCGT D1_Integrated Programme Schedule;OEM (Engineering & Deliverables);WHOLE PLANT / GENERAL ACTIVITIES;SYSTEM ENGINEERING (DELTA ENGINEERING);P - Systems Engineering Process",0,1,0.0,0.0002034588,0.0,27,1.0,0.0000812387,0.0,0.0030769231,0.0,0.0005221932,0.0,0.0605381166,1.0,0.0
1.5.11.3.2-8,SI-P--2-35,"DESIGN DATA SHEETS P-COMPONENTS",7112,"CCGTD1_IPS",TT_Task,"61452",-,-,-,100,TK_Complete,26/11/2016,03/11/2016,25/02/2017,15/02/2017,"SI----2C00 FS","SI----2C00","SI-P--2I45 FS,SI-P--2-70# SS,SI-P--2-45 FS,SI-PAC2B45 SS","SI-P--2I45,SI-P--2-70#,SI-P--2-45,SI-PAC2B45",69,102,82,117,16,24,19,27,1,,"CCGT D1_Integrated Programme Schedule;OEM (Engineering & Deliverables);WHOLE PLANT / GENERAL ACTIVITIES;SYSTEM ENGINEERING (DELTA ENGINEERING);P - Systems Engineering Process",1,3,0.0000006211,0.008138352,0.0002034588,91,0.0,0.0000898127,0.0068493151,0.0092307692,0.0009375,0.0208877285,0.0006435006,0.2040358744,0.0,0.003513165
1.5.11.3.2-9,SI-PAC2B45,"DESIGN DATA SHEETS FOR CW PUMP PAC",7112,"CCGTD1_IPS",TT_FinMile,"61452",-,-,-,100,TK_Complete,13/01/2017,15/12/2016,13/01/2017,15/12/2016,"SI-P--2-35 SS","SI-P--2-35","SI1PAH2-80 FS","SI1PAH2-80",76,108,76,108,17,25,17,25,1,,"CCGT D1_Integrated Programme Schedule;OEM (Engineering & Deliverables);WHOLE PLANT / GENERAL ACTIVITIES;SYSTEM ENGINEERING (DELTA ENGINEERING);P - Systems Engineering Process",1,1,0.0000009937,0.0032553408,0.0004069176,0,1.0,0.0000812387,0.0068493151,0.0030769231,0.0015,0.0083550914,0.0012870013,0.0,1.0,0.0
1.5.11.3.2-10,SI-P--2I45,"DESIGN DATA SHEETS SAFETY, CONTROL VALVES P-SYSTEMS",7112,"CCGTD1_IPS",TT_FinMile,"61452",-,-,-,100,TK_Complete,28/02/2017,15/02/2017,28/02/2017,15/02/2017,"SI-P--2-35 FS","SI-P--2-35","","",82,117,82,117,19,27,19,27,2,,"CCGT D1_Integrated Programme Schedule;OEM (Engineering & Deliverables);WHOLE PLANT / GENERAL ACTIVITIES;SYSTEM ENGINEERING (DELTA ENGINEERING);P - Systems Engineering Process",1,0,0.0,0.0,0.0004069176,0,1.0,0.0000812387,0.0068493151,0.0,0.0,0.0,0.0012870013,0.0,1.0,0.0
1.5.11.3.2-11,SI-P--2-10,"ENGINEERING P&IDs, SYSTEM DESCRIPTION P-SYSTEMS",7112,"CCGTD1_IPS",TT_Task,"61452",-,-,-,100,TK_Complete,14/01/2017,30/12/2016,03/03/2017,16/02/2017,"SI-P--2-05 FS","SI-P--2-05","","",76,111,83,117,17,25,19,27,1,,"CCGT D1_Integrated Programme Schedule;OEM (Engineering & Deliverables);WHOLE PLANT / GENERAL ACTIVITIES;SYSTEM ENGINEERING (DELTA ENGINEERING);P - Systems Engineering Process",1,0,0.0,0.0,0.0002034588,48,1.0,0.0001189607,0.0068493151,0.0,0.0,0.0,0.0006435006,0.1076233184,1.0,0.0154565221
1.5.11.3.2-12,SI-P--2-05,"PREPARATION P&IDs P-SYSTEMS (FIRST ISSUE)",7112,"CCGTD1_IPS",TT_Task,"61452",-,-,-,100,TK_Complete,10/12/2016,17/11/2016,21/01/2017,29/12/2016,"","","SI-P--2-10 FS,SI1PAH2-75 FF,SI1PDB2-75 FF","SI-P--2-10,SI1PAH2-75,SI1PDB2-75",71,104,77,110,16,24,18,25,1,,"CCGT D1_Integrated Programme Schedule;OEM (Engineering & Deliverables);WHOLE PLANT / GENERAL ACTIVITIES;SYSTEM ENGINEERING (DELTA ENGINEERING);P - Systems Engineering Process",0,3,0.0,0.007121058,0.0,42,1.0,0.0000812387,0.0,0.0092307692,0.0,0.0182767624,0.0,0.0941704036,1.0,0.0
1.5.11.3.3,61451,"L - Systems Engineering Process",7112,"CCGTD1_IPS",WBS,"61449",,,,100,Complete,26/11/2016,03/11/2016,10/10/2017,09/09/2017,,,,,69,102,114,147,16,24,26,34,,,"CCGT D1_Integrated Programme Schedule;OEM (Engineering & Deliverables);WHOLE PLANT / GENERAL ACTIVITIES;SYSTEM ENGINEERING (DELTA ENGINEERING)"
1.5.11.3.3-1,SI-L--2-35,"DESIGN DATA SHEETS L- COMPONENTS",7112,"CCGTD1_IPS",TT_Task,"61451",-,-,-,100,TK_Complete,26/11/2016,03/11/2016,11/03/2017,16/02/2017,"","","SI-L--2I45 FS,SI-L--2-70# SS,SI-L--2-45 FS","SI-L--2I45,SI-L--2-70#,SI-L--2-45",69,102,84,117,16,24,19,27,1,,"CCGT D1_Integrated Programme Schedule;OEM (Engineering & Deliverables);WHOLE PLANT / GENERAL ACTIVITIES;SYSTEM ENGINEERING (DELTA ENGINEERING);L - Systems Engineering Process",0,2,0.0,0.0008138352,0.0,105,1.0,0.0000812387,0.0,0.0061538462,0.0,0.0020887728,0.0,0.235426009,1.0,0.0
1.5.11.3.3-2,SI-L--2-45,"DESIGN DATA SHEETS FOR ALL L- COMPONENTS AVAILABLE",7112,"CCGTD1_IPS",TT_FinMile,"61451",-,-,-,100,TK_Complete,28/02/2017,16/02/2017,28/02/2017,16/02/2017,"SI-L--2-35 FS","SI-L--2-35","SI-L--2-75 FS","SI-L--2-75",82,117,82,117,19,27,19,27,2,,"CCGT D1_Integrated Programme Schedule;OEM (Engineering & Deliverables);WHOLE PLANT / GENERAL ACTIVITIES;SYSTEM ENGINEERING (DELTA ENGINEERING);L - Systems Engineering Process",1,1,0.0000000828,0.0004069176,0.0002034588,0,1.0,0.0000812387,0.0068493151,0.0030769231,0.000125,0.0010443864,0.0006435006,0.0,1.0,0.0
1.5.11.3.3-3,SI-L--2I45,"DESIGN DATA SHEETS SAFETY, CONTROL VALVES L- SYSTEMS",7112,"CCGTD1_IPS",TT_FinMile,"61451",-,-,-,100,TK_Complete,10/05/2017,09/04/2017,10/05/2017,09/04/2017,"SI-L--2-35 FS,SI1LCA2B14 FS,SI1LAC2B14 FS,SI1LCB2B14 FS","SI-L--2-35,SI1LCA2B14,SI1LAC2B14,SI1LCB2B14","","",93,125,93,125,21,29,21,29,5,,"CCGT D1_Integrated Programme Schedule;OEM (Engineering & Deliverables);WHOLE PLANT / GENERAL ACTIVITIES;SYSTEM ENGINEERING (DELTA ENGINEERING);L - Systems Engineering Process",4,0,0.0,0.0,0.0024415056,0,1.0,0.0000812387,0.0273972603,0.0,0.0,0.0,0.0077220077,0.0,1.0,0.0
1.5.11.3.3-4,SI-L--2-75,"DESIGN REVIEW INCL. SIL-STUDY L- SYSTEMS",7112,"CCGTD1_IPS",TT_Task,"61451",-,-,-,100,TK_Complete,01/03/2017,17/02/2017,04/04/2017,10/03/2017,"SI-L--2-45 FS,SI-L--2-25 FS","SI-L--2-45,SI-L--2-25","SI-L--2-65 FS","SI-L--2-65",83,118,87,121,19,27,20,28,3,,"CCGT D1_Integrated Programme Schedule;OEM (Engineering & Deliverables);WHOLE PLANT / GENERAL ACTIVITIES;SYSTEM ENGINEERING (DELTA ENGINEERING);L - Systems Engineering Process",2,1,0.0000001656,0.0002034588,0.0008138352,34,1.0,0.0002221395,0.0136986301,0.0030769231,0.00025,0.0005221932,0.0025740026,0.0762331839,1.0,0.0577338257
1.5.11.3.3-5,SI-L--2-65,"(DF) PROCESS FINAL L- SYSTEMS",7112,"CCGTD1_IPS",TT_FinMile,"61451",-,-,-,100,TK_Complete,08/04/2017,10/03/2017,08/04/2017,10/03/2017,"SI-L--2-75 FS","SI-L--2-75","SI-L--2-70# FF,SI-L--2-28# FS","SI-L--2-70#,SI-L--2-28#",88,121,88,121,20,28,20,28,4,,"CCGT D1_Integrated Programme Schedule;OEM (Engineering & Deliverables);WHOLE PLANT / GENERAL ACTIVITIES;SYSTEM ENGINEERING (DELTA ENGINEERING);L - Systems Engineering Process",1,0,0.0,0.0,0.001017294,0,1.0,0.0000812387,0.0068493151,0.0,0.0,0.0,0.0032175032,0.0,1.0,0.0
1.5.11.3.3-6,SI-L--2-70,"(DF) I&C DATA L- SYSTEMS",7112,"CCGTD1_IPS",TT_FinMile,"61451",-,-,-,100,TK_Complete,08/10/2017,07/09/2017,08/10/2017,07/09/2017,"SI1HA-2-70 FS","SI1HA-2-70","SI-C--2-55 FS","SI-C--2-55",114,146,114,146,26,34,26,34,12,,"CCGT D1_Integrated Programme Schedule;OEM (Engineering & Deliverables);WHOLE PLANT / GENERAL ACTIVITIES;SYSTEM ENGINEERING (DELTA ENGINEERING);L - Systems Engineering Process",1,1,0.0,0.002034588,0.0034587996,0,1.0,0.0000812387,0.0068493151,0.0030769231,0.0,0.0052219321,0.0109395109,0.0,1.0,0.0
1.5.11.3.3-7,SI-L--2-25,"DESIGN REVIEW INTERFACE ST / L- SYSTEMS",7112,"CCGTD1_IPS",TT_Task,"61451",-,-,-,100,TK_Complete,14/01/2017,13/01/2017,03/02/2017,15/02/2017,"SI----2D00 FS","SI----2D00","SI-L--2-75 FS","SI-L--2-75",76,113,79,117,17,26,18,27,1,,"CCGT D1_Integrated Programme Schedule;OEM (Engineering & Deliverables);WHOLE PLANT / GENERAL ACTIVITIES;SYSTEM ENGINEERING (DELTA ENGINEERING);L - Systems Engineering Process",1,1,0.0000000828,0.0004069176,0.0002034588,20,0.0,0.0000842786,0.0068493151,0.0030769231,0.000125,0.0010443864,0.0006435006,0.0448430493,0.0,0.0012455805
1.5.11.3.3-8,SI-L--2-10,"ENGINEERING P&IDs, SYSTEM DESCRIPTION L- SYSTEMS",7112,"CCGTD1_IPS",TT_Task,"61451",-,-,-,100,TK_Complete,03/02/2017,29/12/2016,23/03/2017,15/02/2017,"SI-L--2-05 FS","SI-L--2-05","","",79,110,86,117,18,25,20,27,2,,"CCGT D1_Integrated Programme Schedule;OEM (Engineering & Deliverables);WHOLE PLANT / GENERAL ACTIVITIES;SYSTEM ENGINEERING (DELTA ENGINEERING);L - Systems Engineering Process",1,0,0.0,0.0,0.0002034588,48,1.0,0.0001503957,0.0068493151,0.0,0.0,0.0,0.0006435006,0.1076233184,1.0,0.0283369572
1.5.11.3.3-9,SI-L--2-05,"PREPARATION P&IDs L- SYSTEMS (FIRST ISSUE)",7112,"CCGTD1_IPS",TT_Task,"61451",-,-,-,100,TK_Complete,10/12/2016,17/11/2016,21/01/2017,28/12/2016,"","","SI-L--2-10 FS","SI-L--2-10",71,104,77,110,16,24,18,25,1,,"CCGT D1_Integrated Programme Schedule;OEM (Engineering & Deliverables);WHOLE PLANT / GENERAL ACTIVITIES;SYSTEM ENGINEERING (DELTA ENGINEERING);L - Systems Engineering Process",0,1,0.0,0.0002034588,0.0,42,1.0,0.0000812387,0.0,0.0030769231,0.0,0.0005221932,0.0,0.0941704036,1.0,0.0
1.5.11.3.3-10,SI-L--2-30,"REVISION P&IDs AFTER 3D DRV L- SYSTEMS",7112,"CCGTD1_IPS",TT_Task,"61451",-,-,-,100,TK_Complete,08/09/2017,07/08/2017,05/10/2017,09/09/2017,"","","SI-L--2-50 FS","SI-L--2-50",110,142,114,147,25,33,26,34,11,,"CCGT D1_Integrated Programme Schedule;OEM (Engineering & Deliverables);WHOLE PLANT / GENERAL ACTIVITIES;SYSTEM ENGINEERING (DELTA ENGINEERING);L - Systems Engineering Process",0,1,0.0,0.0002034588,0.0,27,0.4,0.0000812387,0.0,0.0030769231,0.0,0.0005221932,0.0,0.0605381166,0.4,0.0
1.5.11.3.3-11,SI-L--2-50,"(DF) MECHANICAL ENGINEERING, PLANT LAYOUT L- SYSTEMS",7112,"CCGTD1_IPS",TT_FinMile,"61451",-,-,-,100,TK_Complete,10/10/2017,09/09/2017,10/10/2017,09/09/2017,"SI-L--2-30 FS","SI-L--2-30","","",114,147,114,147,26,34,26,34,12,,"CCGT D1_Integrated Programme Schedule;OEM (Engineering & Deliverables);WHOLE PLANT / GENERAL ACTIVITIES;SYSTEM ENGINEERING (DELTA ENGINEERING);L - Systems Engineering Process",1,0,0.0,0.0,0.0002034588,0,1.0,0.0000812387,0.0068493151,0.0,0.0,0.0,0.0006435006,0.0,1.0,0.0
1.5.11.3.4,61450,"HRSG - Systems Engineering Process",7112,"CCGTD1_IPS",WBS,"61449",,,,100,Complete,30/09/2016,11/06/2016,26/01/2018,13/09/2017,,,,,61,82,130,147,14,19,30,34,,,"CCGT D1_Integrated Programme Schedule;OEM (Engineering & Deliverables);WHOLE PLANT / GENERAL ACTIVITIES;SYSTEM ENGINEERING (DELTA ENGINEERING)"
1.5.11.3.4-1,SI-HA-2-86,"SYSTEM MEETINGS WITH HRSG SUPPLIERS",7112,"CCGTD1_IPS",TT_Task,"61450",-,-,-,100,TK_Complete,03/11/2016,03/11/2016,15/12/2016,15/12/2016,"SI1HA-2-85 FS","SI1HA-2-85","SI-HA-2-10 FF,SI-HA-2-87# SS","SI-HA-2-10,SI-HA-2-87#",66,102,72,108,15,24,16,25,0,,"CCGT D1_Integrated Programme Schedule;OEM (Engineering & Deliverables);WHOLE PLANT / GENERAL ACTIVITIES;SYSTEM ENGINEERING (DELTA ENGINEERING);HRSG - Systems Engineering Process",1,1,0.0000020702,0.0044760936,0.002034588,42,1.0,0.0000839432,0.0068493151,0.0030769231,0.003125,0.0114882507,0.0064350064,0.0941704036,1.0,0.0011081492
1.5.11.3.4-2,SI-HA-2-10,"ENGINEERING P&IDs, SYSTEM DESCRIPTION HRSG-SYSTEMS",7112,"CCGTD1_IPS",TT_Task,"61450",-,-,-,100,TK_Complete,14/01/2017,10/12/2016,20/01/2017,16/12/2016,"SI-HA-2-86 FF","SI-HA-2-86","SI1HA-2-31 FS,SI1HA-2-70 FS,SI-HA-2-59 FS","SI1HA-2-31,SI1HA-2-70,SI-HA-2-59",76,108,77,109,17,25,18,25,1,,"CCGT D1_Integrated Programme Schedule;OEM (Engineering & Deliverables);WHOLE PLANT / GENERAL ACTIVITIES;SYSTEM ENGINEERING (DELTA ENGINEERING);HRSG - Systems Engineering Process",1,3,0.0000025256,0.0042726348,0.0022380468,6,1.0,0.0001526971,0.0068493151,0.0092307692,0.0038125,0.0109660574,0.0070785071,0.0134529148,1.0,0.029279923
1.5.11.3.4-3,SI-HA-2-59,"DESIGN REVIEW INCL. SIL-STUDY HRSG-SYSTEMS",7112,"CCGTD1_IPS",TT_Task,"61450",-,-,-,100,TK_Complete,21/01/2017,17/12/2016,24/02/2017,31/03/2017,"SI-HA-2-10 FS","SI-HA-2-10","SI-HA-2-65 FS","SI-HA-2-65",77,109,82,124,18,25,19,28,1,,"CCGT D1_Integrated Programme Schedule;OEM (Engineering & Deliverables);WHOLE PLANT / GENERAL ACTIVITIES;SYSTEM ENGINEERING (DELTA ENGINEERING);HRSG - Systems Engineering Process",1,1,0.0000004968,0.0026449644,0.0024415056,34,0.0,0.0002112046,0.0068493151,0.0030769231,0.00075,0.0067885117,0.0077220077,0.0762331839,0.0,0.0532532789
1.5.11.3.4-4,SI-HA-2-11,"P&IDs, DATA SHEETS, LIFE TIME DESIGN CRITERIA FOR INQUIRY AND ORDERING HRSG AVAILABLE",7112,"CCGTD1_IPS",TT_FinMile,"61450",-,-,-,100,TK_Complete,30/09/2016,08/07/2016,30/09/2016,08/07/2016,"SI-HA-2-75 SS","SI-HA-2-75","SI1HA-2-77 FS","SI1HA-2-77",61,86,61,86,14,20,14,20,0,,"CCGT D1_Integrated Programme Schedule;OEM (Engineering & Deliverables);WHOLE PLANT / GENERAL ACTIVITIES;SYSTEM ENGINEERING (DELTA ENGINEERING);HRSG - Systems Engineering Process",1,1,0.0000000414,0.0128179044,0.0002034588,0,1.0,0.0000812387,0.0068493151,0.0030769231,0.0000625,0.0328981723,0.0006435006,0.0,1.0,0.0
1.5.11.3.4-5,SI-HA-2-65,"(DF) PROCESS FINAL HRSG-SYSTEMS",7112,"CCGTD1_IPS",TT_FinMile,"61450",-,-,-,100,TK_Complete,31/03/2017,31/03/2017,31/03/2017,31/03/2017,"SI-HA-2-59 FS","SI-HA-2-59","SI-HA-2-28# FS,SI-HA-2-87# FF,SI1HA-2-70 FS","SI-HA-2-28#,SI-HA-2-87#,SI1HA-2-70",87,124,87,124,20,28,20,28,3,,"CCGT D1_Integrated Programme Schedule;OEM (Engineering & Deliverables);WHOLE PLANT / GENERAL ACTIVITIES;SYSTEM ENGINEERING (DELTA ENGINEERING);HRSG - Systems Engineering Process",1,1,0.0000004968,0.0024415056,0.0026449644,0,1.0,0.0000812387,0.0068493151,0.0030769231,0.00075,0.0062663185,0.0083655084,0.0,1.0,0.0
1.5.11.3.4-6,SI-HA-2-68&,"DATA INPUT HRSG COMPLETED FOR I&C DESIGN",7112,"CCGTD1_IPS",TT_FinMile,"61450",-,-,-,100,TK_Complete,26/01/2018,08/02/2017,26/01/2018,08/02/2017,"SI1HA-2-31 SS","SI1HA-2-31","","",130,116,130,116,30,27,30,27,18,,"CCGT D1_Integrated Programme Schedule;OEM (Engineering & Deliverables);WHOLE PLANT / GENERAL ACTIVITIES;SYSTEM ENGINEERING (DELTA ENGINEERING);HRSG - Systems Engineering Process"
1.5.11.3.4-7,SI-HA-2-75,"PREPARING DOCUMENTS INQUIRY/ CONTRACT ODER FOR HRSG",7112,"CCGTD1_IPS",TT_Task,"61450",-,-,-,100,TK_Complete,01/10/2016,11/06/2016,10/11/2016,22/07/2016,"","","SI-HA-2-11 SS,SI1HA-2-78 FS","SI-HA-2-11,SI1HA-2-78",61,82,67,88,14,19,15,20,0,,"CCGT D1_Integrated Programme Schedule;OEM (Engineering & Deliverables);WHOLE PLANT / GENERAL ACTIVITIES;SYSTEM ENGINEERING (DELTA ENGINEERING);HRSG - Systems Engineering Process",0,2,0.0,0.0130213632,0.0,40,0.8,0.0000812387,0.0,0.0061538462,0.0,0.0334203655,0.0,0.0896860987,0.8,0.0
1.5.11.4,61447,"AUTOMATION STEAM TURBINE",7112,"CCGTD1_IPS",WBS,"61412",,,,100,Complete,26/03/2018,16/03/2018,24/05/2018,13/05/2018,,,,,138,174,147,182,32,40,34,42,,,"CCGT D1_Integrated Programme Schedule;OEM (Engineering & Deliverables);WHOLE PLANT / GENERAL ACTIVITIES"
1.5.11.4.1,61448,"I&C - Field Devices / Installation Material for ST-Set",7112,"CCGTD1_IPS",WBS,"61447",,,,100,Complete,26/03/2018,16/03/2018,24/05/2018,13/05/2018,,,,,138,174,147,182,32,40,34,42,,,"CCGT D1_Integrated Programme Schedule;OEM (Engineering & Deliverables);WHOLE PLANT / GENERAL ACTIVITIES;AUTOMATION STEAM TURBINE"
1.5.11.4.1-1,SI1C--4-27,"ST I&C TRANSPORT TO SITE FIELD INSTRUMENTATION",7112,"CCGTD1_IPS",TT_Task,"61448",-,-,-,100,TK_Complete,26/03/2018,16/03/2018,24/05/2018,13/05/2018,"SP1MA-3-82 FS","SP1MA-3-82","","",138,174,147,182,32,40,34,42,23,,"CCGT D1_Integrated Programme Schedule;OEM (Engineering & Deliverables);WHOLE PLANT / GENERAL ACTIVITIES;AUTOMATION STEAM TURBINE;I&C - Field Devices / Installation Material for ST-Set",1,0,0.0,0.0,0.0004069176,59,1.0,0.000144012,0.0068493151,0.0,0.0,0.0,0.0012870013,0.1322869955,1.0,0.0257212381
1.5.11.5,61439,"GENERAL ELECTRICAL ENGINEERING/ ERECTION",7112,"CCGTD1_IPS",WBS,"61412",,,,100,Complete,13/01/2017,14/12/2016,15/07/2018,26/07/2018,,,,,76,108,154,192,17,25,36,45,,,"CCGT D1_Integrated Programme Schedule;OEM (Engineering & Deliverables);WHOLE PLANT / GENERAL ACTIVITIES"
1.5.11.5.1,61446,"Plant Security Systems (CYP)",7112,"CCGTD1_IPS",WBS,"61439",,,,100,Complete,26/10/2017,29/09/2017,06/07/2018,13/07/2018,,,,,117,150,153,191,27,35,35,44,,,"CCGT D1_Integrated Programme Schedule;OEM (Engineering & Deliverables);WHOLE PLANT / GENERAL ACTIVITIES;GENERAL ELECTRICAL ENGINEERING/ ERECTION"
1.5.11.5.1-1,SI-CYP3-25,"MANUFACTURING, SHOP TEST SECURITY CYP",7112,"CCGTD1_IPS",TT_Task,"61446",-,-,-,100,TK_Complete,26/10/2017,29/09/2017,09/02/2018,25/06/2018,"","","SI-CYP3-80 FS","SI-CYP3-80",117,150,132,188,27,35,30,43,13,,"CCGT D1_Integrated Programme Schedule;OEM (Engineering & Deliverables);WHOLE PLANT / GENERAL ACTIVITIES;GENERAL ELECTRICAL ENGINEERING/ ERECTION;Plant Security Systems (CYP)",0,1,0.0,0.0004069176,0.0,106,0.0,0.0000812387,0.0,0.0030769231,0.0,0.0010443864,0.0,0.2376681614,0.0,0.0
1.5.11.5.1-2,SI-CYP3-80,"(RFS) READY FOR SHIPMENT SECURITY CYP",7112,"CCGTD1_IPS",TT_FinMile,"61446",-,-,-,100,TK_Complete,14/05/2018,28/06/2018,14/05/2018,28/06/2018,"SI-CYP3-25 FS","SI-CYP3-25","SI-CYP4-27 FS","SI-CYP4-27",145,188,145,188,34,44,34,44,27,,"CCGT D1_Integrated Programme Schedule;OEM (Engineering & Deliverables);WHOLE PLANT / GENERAL ACTIVITIES;GENERAL ELECTRICAL ENGINEERING/ ERECTION;Plant Security Systems (CYP)",1,1,0.0000000414,0.0002034588,0.0002034588,0,1.0,0.0000812387,0.0068493151,0.0030769231,0.0000625,0.0005221932,0.0006435006,0.0,1.0,0.0
1.5.11.5.1-3,SI-CYP4-27,"TRANSPORT SECURITY CYP",7112,"CCGTD1_IPS",TT_Task,"61446",-,-,-,100,TK_Complete,15/05/2018,29/06/2018,06/07/2018,13/07/2018,"SI-CYP3-80 FS","SI-CYP3-80","","",145,189,153,191,34,44,35,44,28,,"CCGT D1_Integrated Programme Schedule;OEM (Engineering & Deliverables);WHOLE PLANT / GENERAL ACTIVITIES;GENERAL ELECTRICAL ENGINEERING/ ERECTION;Plant Security Systems (CYP)",1,0,0.0,0.0,0.0004069176,52,1.0,0.0001503957,0.0068493151,0.0,0.0,0.0,0.0012870013,0.1165919283,1.0,0.0283369572
1.5.11.5.2,61445,"Plant Communication Systems (CYA)",7112,"CCGTD1_IPS",WBS,"61439",,,,100,Complete,26/10/2017,29/09/2017,06/07/2018,13/07/2018,,,,,117,150,153,191,27,35,35,44,,,"CCGT D1_Integrated Programme Schedule;OEM (Engineering & Deliverables);WHOLE PLANT / GENERAL ACTIVITIES;GENERAL ELECTRICAL ENGINEERING/ ERECTION"
1.5.11.5.2-1,SI-CYA3-25,"MANUFACTURING, SHOP TEST TELECOMMUNICATION CYA",7112,"CCGTD1_IPS",TT_Task,"61445",-,-,-,100,TK_Complete,26/10/2017,29/09/2017,09/02/2018,25/06/2018,"","","SI-CYA3-80 FS","SI-CYA3-80",117,150,132,188,27,35,30,43,13,,"CCGT D1_Integrated Programme Schedule;OEM (Engineering & Deliverables);WHOLE PLANT / GENERAL ACTIVITIES;GENERAL ELECTRICAL ENGINEERING/ ERECTION;Plant Communication Systems (CYA)",0,1,0.0,0.0004069176,0.0,106,0.0,0.0000812387,0.0,0.0030769231,0.0,0.0010443864,0.0,0.2376681614,0.0,0.0
1.5.11.5.2-2,SI-CYA4-27,"TRANSPORT TELECOMMUNICATION CYA",7112,"CCGTD1_IPS",TT_Task,"61445",-,-,-,100,TK_Complete,15/05/2018,29/06/2018,06/07/2018,13/07/2018,"SI-CYA3-80 FS","SI-CYA3-80","","",145,189,153,191,34,44,35,44,28,,"CCGT D1_Integrated Programme Schedule;OEM (Engineering & Deliverables);WHOLE PLANT / GENERAL ACTIVITIES;GENERAL ELECTRICAL ENGINEERING/ ERECTION;Plant Communication Systems (CYA)",1,0,0.0,0.0,0.0004069176,52,1.0,0.0001503957,0.0068493151,0.0,0.0,0.0,0.0012870013,0.1165919283,1.0,0.0283369572
1.5.11.5.2-3,SI-CYA3-80,"(RFS) READY FOR SHIPMENT TELECOMMUNICATION CYA",7112,"CCGTD1_IPS",TT_FinMile,"61445",-,-,-,100,TK_Complete,14/05/2018,28/06/2018,14/05/2018,28/06/2018,"SI-CYA3-25 FS","SI-CYA3-25","SI-CYA4-27 FS","SI-CYA4-27",145,188,145,188,34,44,34,44,27,,"CCGT D1_Integrated Programme Schedule;OEM (Engineering & Deliverables);WHOLE PLANT / GENERAL ACTIVITIES;GENERAL ELECTRICAL ENGINEERING/ ERECTION;Plant Communication Systems (CYA)",1,1,0.0000000414,0.0002034588,0.0002034588,0,1.0,0.0000812387,0.0068493151,0.0030769231,0.0000625,0.0005221932,0.0006435006,0.0,1.0,0.0
1.5.11.5.3,61444,"Cable Support System BZP",7112,"CCGTD1_IPS",WBS,"61439",,,,100,Complete,26/06/2017,02/06/2017,22/06/2018,20/06/2018,,,,,99,133,151,187,23,31,35,43,,,"CCGT D1_Integrated Programme Schedule;OEM (Engineering & Deliverables);WHOLE PLANT / GENERAL ACTIVITIES;GENERAL ELECTRICAL ENGINEERING/ ERECTION"
1.5.11.5.3-1,SI-BZP3-82,"MANUFACTURING, SHOP TEST CABLE SUPPORT SYSTEM BZP (MAIN)",7112,"CCGTD1_IPS",TT_Task,"61444",-,-,-,100,TK_Complete,16/10/2017,15/09/2017,10/12/2017,08/03/2018,"SI-BZP3-25 FS","SI-BZP3-25","SI-BZP3-84 FS","SI-BZP3-84",115,148,123,172,27,34,28,40,12,,"CCGT D1_Integrated Programme Schedule;OEM (Engineering & Deliverables);WHOLE PLANT / GENERAL ACTIVITIES;GENERAL ELECTRICAL ENGINEERING/ ERECTION;Cable Support System BZP",1,1,0.0000000828,0.0004069176,0.0002034588,55,0.0,0.0001503957,0.0068493151,0.0030769231,0.000125,0.0010443864,0.0006435006,0.1233183857,0.0,0.0283369572
1.5.11.5.3-2,SI-BZP3-84,"(RFS) READY FOR SHIPMENT FIRST CABLE SUPPORT SYSTEM BZP (MAIN)",7112,"CCGTD1_IPS",TT_FinMile,"61444",-,-,-,100,TK_Complete,08/04/2018,08/04/2018,08/04/2018,08/04/2018,"SI-BZP3-82 FS","SI-BZP3-82","SI-BZP4-29 FS","SI-BZP4-29",140,177,140,177,32,41,32,41,24,,"CCGT D1_Integrated Programme Schedule;OEM (Engineering & Deliverables);WHOLE PLANT / GENERAL ACTIVITIES;GENERAL ELECTRICAL ENGINEERING/ ERECTION;Cable Support System BZP",1,1,0.0000000828,0.0002034588,0.0004069176,0,1.0,0.0000812387,0.0068493151,0.0030769231,0.000125,0.0005221932,0.0012870013,0.0,1.0,0.0
1.5.11.5.3-3,SI-BZP4-29,"TRANSPORT FIRST CABLE SUPPORT SYSTEM BZP (MAIN)",7112,"CCGTD1_IPS",TT_Task,"61444",-,-,-,100,TK_Complete,09/04/2018,09/04/2018,07/06/2018,21/04/2018,"SI-BZP3-84 FS","SI-BZP3-84","","",140,177,149,179,32,41,34,41,24,,"CCGT D1_Integrated Programme Schedule;OEM (Engineering & Deliverables);WHOLE PLANT / GENERAL ACTIVITIES;GENERAL ELECTRICAL ENGINEERING/ ERECTION;Cable Support System BZP",1,0,0.0,0.0,0.0006103764,59,1.0,0.0001503957,0.0068493151,0.0,0.0,0.0,0.0019305019,0.1322869955,1.0,0.0283369572
1.5.11.5.3-4,SI-BZP3-25,"MANUFACTURING, SHOP TEST FIRST CABLE SUPPORT SYSTEM BZP (FOR PRE-FAB MODULES)",7112,"CCGTD1_IPS",TT_Task,"61444",-,-,-,100,TK_Complete,26/06/2017,02/06/2017,18/08/2017,01/09/2017,"","","SI-BZP3-82 FS,SI-BZP3-80 FS","SI-BZP3-82,SI-BZP3-80",99,133,107,146,23,31,25,34,8,,"CCGT D1_Integrated Programme Schedule;OEM (Engineering & Deliverables);WHOLE PLANT / GENERAL ACTIVITIES;GENERAL ELECTRICAL ENGINEERING/ ERECTION;Cable Support System BZP",0,2,0.0,0.001017294,0.0,53,0.0,0.0000812387,0.0,0.0061538462,0.0,0.0026109661,0.0,0.1188340807,0.0,0.0
1.5.11.5.3-5,SI-BZP3-80,"(RFS) READY FOR SHIPMENT CABLE SUPPORT SYSTEM BZP (FOR PRE-FAB MODULES)",7112,"CCGTD1_IPS",TT_FinMile,"61444",-,-,-,100,TK_Complete,02/10/2017,01/09/2017,02/10/2017,01/09/2017,"SI-BZP3-25 FS","SI-BZP3-25","SI-BZP4-31 FS","SI-BZP4-31",113,146,113,146,26,34,26,34,12,,"CCGT D1_Integrated Programme Schedule;OEM (Engineering & Deliverables);WHOLE PLANT / GENERAL ACTIVITIES;GENERAL ELECTRICAL ENGINEERING/ ERECTION;Cable Support System BZP",1,1,0.0000000414,0.0002034588,0.0002034588,0,1.0,0.0000812387,0.0068493151,0.0030769231,0.0000625,0.0005221932,0.0006435006,0.0,1.0,0.0
1.5.11.5.3-6,SI-BZP4-31,"TRANSPORT FIRST CABLE SUPPORT SYSTEM BZP (FOR PRE-FAB MODULES)",7112,"CCGTD1_IPS",TT_Task,"61444",-,-,-,100,TK_Complete,26/10/2017,29/09/2017,12/12/2017,29/12/2017,"SI-BZP3-80 FS","SI-BZP3-80","","",117,150,123,163,27,35,28,38,13,,"CCGT D1_Integrated Programme Schedule;OEM (Engineering & Deliverables);WHOLE PLANT / GENERAL ACTIVITIES;GENERAL ELECTRICAL ENGINEERING/ ERECTION;Cable Support System BZP",1,0,0.0,0.0,0.0004069176,47,0.0,0.0001503957,0.0068493151,0.0,0.0,0.0,0.0012870013,0.1053811659,0.0,0.0283369572
1.5.11.5.3-7,SI-BZP3B25,"MANUFACTURING, SHOP TEST CABLE SUPPORT SYSTEM BZP (BOP)",7112,"CCGTD1_IPS",TT_Task,"61444",-,-,-,100,TK_Complete,26/11/2017,17/11/2017,20/01/2018,31/05/2018,"","","SI-BZP3B80 FS","SI-BZP3B80",121,157,129,184,28,36,30,43,14,,"CCGT D1_Integrated Programme Schedule;OEM (Engineering & Deliverables);WHOLE PLANT / GENERAL ACTIVITIES;GENERAL ELECTRICAL ENGINEERING/ ERECTION;Cable Support System BZP",0,1,0.0,0.0004069176,0.0,55,0.0,0.0000812387,0.0,0.0030769231,0.0,0.0010443864,0.0,0.1233183857,0.0,0.0
1.5.11.5.3-8,SI-BZP3B80,"(RFS) READY FOR SHIPMENT CABLE SUPPORT SYSTEM BZP (BOP)",7112,"CCGTD1_IPS",TT_FinMile,"61444",-,-,-,100,TK_Complete,23/04/2018,31/05/2018,23/04/2018,31/05/2018,"SI-BZP3B25 FS","SI-BZP3B25","SI-BZP4B27 FS","SI-BZP4B27",142,184,142,184,33,43,33,43,25,,"CCGT D1_Integrated Programme Schedule;OEM (Engineering & Deliverables);WHOLE PLANT / GENERAL ACTIVITIES;GENERAL ELECTRICAL ENGINEERING/ ERECTION;Cable Support System BZP",1,1,0.0000000414,0.0002034588,0.0002034588,0,1.0,0.0000812387,0.0068493151,0.0030769231,0.0000625,0.0005221932,0.0006435006,0.0,1.0,0.0
1.5.11.5.3-9,SI-BZP4B27,"TRANSPORT SECOND CABLE SUPPORT SYSTEM BZP (BOP)",7112,"CCGTD1_IPS",TT_Task,"61444",-,-,-,100,TK_Complete,24/04/2018,01/06/2018,22/06/2018,20/06/2018,"SI-BZP3B80 FS","SI-BZP3B80","","",142,185,151,187,33,43,35,43,25,,"CCGT D1_Integrated Programme Schedule;OEM (Engineering & Deliverables);WHOLE PLANT / GENERAL ACTIVITIES;GENERAL ELECTRICAL ENGINEERING/ ERECTION;Cable Support System BZP",1,0,0.0,0.0,0.0004069176,59,1.0,0.0001503957,0.0068493151,0.0,0.0,0.0,0.0012870013,0.1322869955,1.0,0.0283369572
1.5.11.5.4,61443,"MV + LV Cables BZK",7112,"CCGTD1_IPS",WBS,"61439",,,,100,Complete,26/08/2017,25/08/2017,15/07/2018,26/07/2018,,,,,108,145,154,192,25,33,36,45,,,"CCGT D1_Integrated Programme Schedule;OEM (Engineering & Deliverables);WHOLE PLANT / GENERAL ACTIVITIES;GENERAL ELECTRICAL ENGINEERING/ ERECTION"
1.5.11.5.4-1,SI-BZK3-25,"MANUFACTURING, SHOP TEST MV/LV CABLES BZK (1ST SET 30%)",7112,"CCGTD1_IPS",TT_Task,"61443",-,-,-,100,TK_Complete,26/08/2017,25/08/2017,09/02/2018,06/03/2018,"","","SI-BZK3-80 FS,SI-BZK3-90 FS","SI-BZK3-80,SI-BZK3-90",108,145,132,172,25,33,30,40,10,,"CCGT D1_Integrated Programme Schedule;OEM (Engineering & Deliverables);WHOLE PLANT / GENERAL ACTIVITIES;GENERAL ELECTRICAL ENGINEERING/ ERECTION;MV + LV Cables BZK",0,2,0.0,0.001017294,0.0,167,0.0,0.0000812387,0.0,0.0061538462,0.0,0.0026109661,0.0,0.3744394619,0.0,0.0
1.5.11.5.4-2,SI-BZK4-64,"TRANSPORT MV/LV CABLES BZK (1ST SET 30%)",7112,"CCGTD1_IPS",TT_Task,"61443",-,-,-,100,TK_Complete,29/03/2018,14/04/2018,27/04/2018,24/04/2018,"SI-BZK3-80 FS","SI-BZK3-80","","",139,178,143,179,32,41,33,41,24,,"CCGT D1_Integrated Programme Schedule;OEM (Engineering & Deliverables);WHOLE PLANT / GENERAL ACTIVITIES;GENERAL ELECTRICAL ENGINEERING/ ERECTION;MV + LV Cables BZK",1,0,0.0,0.0,0.0004069176,29,1.0,0.0001503957,0.0068493151,0.0,0.0,0.0,0.0012870013,0.0650224215,1.0,0.0283369572
1.5.11.5.4-3,SI-BZK3-80,"(RFS) READY FOR SHIPMENT MV/LV CABLES BZK (1ST SET 30%)",7112,"CCGTD1_IPS",TT_FinMile,"61443",-,-,-,100,TK_Complete,28/03/2018,28/03/2018,28/03/2018,28/03/2018,"SI-BZK3-25 FS","SI-BZK3-25","SI-BZK4-64 FS","SI-BZK4-64",139,175,139,175,32,41,32,41,23,,"CCGT D1_Integrated Programme Schedule;OEM (Engineering & Deliverables);WHOLE PLANT / GENERAL ACTIVITIES;GENERAL ELECTRICAL ENGINEERING/ ERECTION;MV + LV Cables BZK",1,1,0.0000000414,0.0002034588,0.0002034588,0,1.0,0.0000812387,0.0068493151,0.0030769231,0.0000625,0.0005221932,0.0006435006,0.0,1.0,0.0
1.5.11.5.4-4,SI-BZK3-90,"MANUFACTURING, SHOP TEST MV/LV CABLES BZK (2ND SET 80%)",7112,"CCGTD1_IPS",TT_Task,"61443",-,-,-,100,TK_Complete,29/03/2018,15/05/2018,27/05/2018,10/07/2018,"SI-BZK3-25 FS","SI-BZK3-25","SI-BZK3-92 FS","SI-BZK3-92",139,182,147,190,32,42,34,44,24,,"CCGT D1_Integrated Programme Schedule;OEM (Engineering & Deliverables);WHOLE PLANT / GENERAL ACTIVITIES;GENERAL ELECTRICAL ENGINEERING/ ERECTION;MV + LV Cables BZK",1,1,0.0000000828,0.0004069176,0.0002034588,59,1.0,0.0001503957,0.0068493151,0.0030769231,0.000125,0.0010443864,0.0006435006,0.1322869955,1.0,0.0283369572
1.5.11.5.4-5,SI-BZK4-66,"TRANSPORT MV/LV CABLES BZK (2ND SET 80%)",7112,"CCGTD1_IPS",TT_Task,"61443",-,-,-,100,TK_Complete,28/05/2018,21/07/2018,15/07/2018,26/07/2018,"SI-BZK3-92 FS","SI-BZK3-92","","",147,192,154,192,34,44,36,45,29,,"CCGT D1_Integrated Programme Schedule;OEM (Engineering & Deliverables);WHOLE PLANT / GENERAL ACTIVITIES;GENERAL ELECTRICAL ENGINEERING/ ERECTION;MV + LV Cables BZK",1,0,0.0,0.0,0.0006103764,48,1.0,0.0001503957,0.0068493151,0.0,0.0,0.0,0.0019305019,0.1076233184,1.0,0.0283369572
1.5.11.5.4-6,SI-BZK3-92,"(RFS) READY FOR SHIPMENT MV/LV CABLES BZK (2ND SET 80%)",7112,"CCGTD1_IPS",TT_FinMile,"61443",-,-,-,100,TK_Complete,27/05/2018,10/07/2018,27/05/2018,10/07/2018,"SI-BZK3-90 FS","SI-BZK3-90","SI-BZK4-66 FS","SI-BZK4-66",147,190,147,190,34,44,34,44,29,,"CCGT D1_Integrated Programme Schedule;OEM (Engineering & Deliverables);WHOLE PLANT / GENERAL ACTIVITIES;GENERAL ELECTRICAL ENGINEERING/ ERECTION;MV + LV Cables BZK",1,1,0.0000000828,0.0002034588,0.0004069176,0,1.0,0.0000812387,0.0068493151,0.0030769231,0.000125,0.0005221932,0.0012870013,0.0,1.0,0.0
1.5.11.5.5,61442,"Cable Design & Routing",7112,"CCGTD1_IPS",WBS,"61439",,,,100,Complete,10/04/2017,27/03/2017,30/04/2018,29/06/2018,,,,,88,123,143,189,20,28,33,44,,,"CCGT D1_Integrated Programme Schedule;OEM (Engineering & Deliverables);WHOLE PLANT / GENERAL ACTIVITIES;GENERAL ELECTRICAL ENGINEERING/ ERECTION"
1.5.11.5.5-1,SI-B--2-14,"1ST. ROOM TO ROOM MATRIX",7112,"CCGTD1_IPS",TT_FinMile,"61442",-,-,-,100,TK_Complete,10/04/2017,27/03/2017,10/04/2017,27/03/2017,"","","SI-B--2-13 FS","SI-B--2-13",88,123,88,123,20,28,20,28,4,,"CCGT D1_Integrated Programme Schedule;OEM (Engineering & Deliverables);WHOLE PLANT / GENERAL ACTIVITIES;GENERAL ELECTRICAL ENGINEERING/ ERECTION;Cable Design & Routing",0,1,0.0,0.0038657172,0.0,0,1.0,0.0000812387,0.0,0.0030769231,0.0,0.009921671,0.0,0.0,1.0,0.0
1.5.11.5.5-2,SI-B--2-15,"DESIGN POWER / CONTROL CABLES",7112,"CCGTD1_IPS",TT_Task,"61442",-,-,-,100,TK_Complete,11/05/2017,11/04/2017,27/10/2017,27/09/2017,"SI-B--2-19 FS","SI-B--2-19","SI-BF-2-55 FS,SI-B--2-54 FS","SI-BF-2-55,SI-B--2-54",93,125,117,149,21,29,27,34,5,,"CCGT D1_Integrated Programme Schedule;OEM (Engineering & Deliverables);WHOLE PLANT / GENERAL ACTIVITIES;GENERAL ELECTRICAL ENGINEERING/ ERECTION;Cable Design & Routing",1,2,0.0000012421,0.0032553408,0.0006103764,169,1.0,0.0001503957,0.0068493151,0.0061538462,0.001875,0.0083550914,0.0019305019,0.3789237668,1.0,0.0283369572
1.5.11.5.5-3,SI-B--2-19,"1ST. LENGTH MATRIX AVAILABLE",7112,"CCGTD1_IPS",TT_FinMile,"61442",-,-,-,100,TK_Complete,10/05/2017,10/04/2017,10/05/2017,10/04/2017,"SI-B--2-13 FS","SI-B--2-13","SI-B--2-15 FS,SI-BF-2-55 FS","SI-B--2-15,SI-BF-2-55",93,125,93,125,21,29,21,29,5,,"CCGT D1_Integrated Programme Schedule;OEM (Engineering & Deliverables);WHOLE PLANT / GENERAL ACTIVITIES;GENERAL ELECTRICAL ENGINEERING/ ERECTION;Cable Design & Routing",1,2,0.0000014077,0.0034587996,0.0004069176,0,1.0,0.0000812387,0.0068493151,0.0061538462,0.002125,0.0088772846,0.0012870013,0.0,1.0,0.0
1.5.11.5.5-4,SI-B--2-13,"PREPARATION OF LENGTH MATRIX",7112,"CCGTD1_IPS",TT_Task,"61442",-,-,-,100,TK_Complete,11/04/2017,28/03/2017,24/04/2017,10/04/2017,"SI-B--2-14 FS","SI-B--2-14","SI-B--2-19 FS","SI-B--2-19",88,123,90,125,20,28,21,29,4,,"CCGT D1_Integrated Programme Schedule;OEM (Engineering & Deliverables);WHOLE PLANT / GENERAL ACTIVITIES;GENERAL ELECTRICAL ENGINEERING/ ERECTION;Cable Design & Routing",1,1,0.0000007453,0.0036622584,0.0002034588,13,1.0,0.0001503957,0.0068493151,0.0030769231,0.001125,0.0093994778,0.0006435006,0.0291479821,1.0,0.0283369572
1.5.11.5.5-5,SI-B--2-30,"DETAIL DESIGN CABLE ROUTING",7112,"CCGTD1_IPS",TT_Task,"61442",-,-,-,100,TK_Complete,26/06/2017,13/06/2017,03/01/2018,21/12/2017,"SI-B--2A55 FS","SI-B--2A55","","",99,134,127,161,23,31,29,37,8,,"CCGT D1_Integrated Programme Schedule;OEM (Engineering & Deliverables);WHOLE PLANT / GENERAL ACTIVITIES;GENERAL ELECTRICAL ENGINEERING/ ERECTION;Cable Design & Routing",1,0,0.0,0.0,0.0028484232,191,1.0,0.0001503957,0.0068493151,0.0,0.0,0.0,0.009009009,0.4282511211,1.0,0.0283369572
1.5.11.5.5-6,SI-B--2-54,"BINDING ELECTRICAL AND I&C CABLE LIST DATA AVAILABLE",7112,"CCGTD1_IPS",TT_FinMile,"61442",-,-,-,100,TK_Complete,16/12/2017,27/11/2017,16/12/2017,27/11/2017,"SI-B--2-15 FS","SI-B--2-15","SI-B--4-54 FS","SI-B--4-54",124,158,124,158,29,36,29,36,16,,"CCGT D1_Integrated Programme Schedule;OEM (Engineering & Deliverables);WHOLE PLANT / GENERAL ACTIVITIES;GENERAL ELECTRICAL ENGINEERING/ ERECTION;Cable Design & Routing",1,1,0.0000014905,0.0018311292,0.0008138352,0,1.0,0.0000812387,0.0068493151,0.0030769231,0.00225,0.0046997389,0.0025740026,0.0,1.0,0.0
1.5.11.5.5-7,SI-B--4-54,"CABLE PULLING DATA TRANSFER TO SITE",7112,"CCGTD1_IPS",TT_FinMile,"61442",-,-,-,100,TK_Complete,30/04/2018,29/06/2018,30/04/2018,29/06/2018,"SI-B--2A55 FS,SI-B--2-54 FS","SI-B--2A55,SI-B--2-54","SI-C--3C25 FF","SI-C--3C25",143,189,143,189,33,44,33,44,26,,"CCGT D1_Integrated Programme Schedule;OEM (Engineering & Deliverables);WHOLE PLANT / GENERAL ACTIVITIES;GENERAL ELECTRICAL ENGINEERING/ ERECTION;Cable Design & Routing",2,1,0.0000062934,0.0016276704,0.0038657172,0,1.0,0.0000812387,0.0136986301,0.0030769231,0.0095,0.0041775457,0.0122265122,0.0,1.0,0.0
1.5.11.5.6,61441,"Electrical Consumer List (VEL)",7112,"CCGTD1_IPS",WBS,"61439",,,,100,Complete,28/02/2017,17/02/2017,27/10/2017,27/09/2017,,,,,82,118,117,149,19,27,27,34,,,"CCGT D1_Integrated Programme Schedule;OEM (Engineering & Deliverables);WHOLE PLANT / GENERAL ACTIVITIES;GENERAL ELECTRICAL ENGINEERING/ ERECTION"
1.5.11.5.6-1,SP-B--2-56,"CONSUMER LIST (VEL) COMPLETED (FINAL)",7112,"CCGTD1_IPS",TT_Mile,"61441",-,-,-,100,TK_Complete,01/04/2017,23/03/2017,01/04/2017,23/03/2017,"SI-B--2A50 FS","SI-B--2A50","SI-B--2A55 FS","SI-B--2A55",87,122,87,122,20,28,20,28,4,,"CCGT D1_Integrated Programme Schedule;OEM (Engineering & Deliverables);WHOLE PLANT / GENERAL ACTIVITIES;GENERAL ELECTRICAL ENGINEERING/ ERECTION;Electrical Consumer List (VEL)",1,1,0.0,0.0042726348,0.0004069176,0,1.0,0.0000812387,0.0068493151,0.0030769231,0.0,0.0109660574,0.0012870013,0.0,1.0,0.0
1.5.11.5.6-2,SP-B--2-58,"E-CONSUMER LIST WITH MOUNTING LOCATION GT TO GT I&C (VEL)",7112,"CCGTD1_IPS",TT_Mile,"61441",-,-,-,100,TK_Complete,25/07/2017,11/07/2017,25/07/2017,11/07/2017,"SI-B--2A55 FS","SI-B--2A55","","",103,138,103,138,24,32,24,32,9,,"CCGT D1_Integrated Programme Schedule;OEM (Engineering & Deliverables);WHOLE PLANT / GENERAL ACTIVITIES;GENERAL ELECTRICAL ENGINEERING/ ERECTION;Electrical Consumer List (VEL)",1,0,0.0,0.0,0.0028484232,0,1.0,0.0000812387,0.0068493151,0.0,0.0,0.0,0.009009009,0.0,1.0,0.0
1.5.11.5.6-3,SI-BF-2-55,"LV- SWITCHGEAR DATA FINAL",7112,"CCGTD1_IPS",TT_FinMile,"61441",-,-,-,100,TK_Complete,27/10/2017,27/09/2017,27/10/2017,27/09/2017,"SI-B--2A55 FS,SI-B--2-15 FS,SI-B--2-19 FS","SI-B--2A55,SI-B--2-15,SI-B--2-19","SI1CJ-3-25 FF","SI1CJ-3-25",117,149,117,149,27,34,27,34,13,,"CCGT D1_Integrated Programme Schedule;OEM (Engineering & Deliverables);WHOLE PLANT / GENERAL ACTIVITIES;GENERAL ELECTRICAL ENGINEERING/ ERECTION;Electrical Consumer List (VEL)",3,1,0.0000035193,0.0018311292,0.0036622584,0,1.0,0.0000812387,0.0205479452,0.0030769231,0.0053125,0.0046997389,0.0115830116,0.0,1.0,0.0
1.5.11.5.6-4,SI-B--2A50,"(ELV2) PRELIMINARY EL. LOAD DATA FOR LV",7112,"CCGTD1_IPS",TT_FinMile,"61441",-,-,-,100,TK_Complete,28/02/2017,17/02/2017,28/02/2017,17/02/2017,"SI----2C00 FS","SI----2C00","SI-B--2A55 FS,SP-B--2-56 FS","SI-B--2A55,SP-B--2-56",82,118,82,118,19,27,19,27,2,,"CCGT D1_Integrated Programme Schedule;OEM (Engineering & Deliverables);WHOLE PLANT / GENERAL ACTIVITIES;GENERAL ELECTRICAL ENGINEERING/ ERECTION;Electrical Consumer List (VEL)",1,2,0.0000007867,0.0044760936,0.0002034588,0,1.0,0.0000812387,0.0068493151,0.0061538462,0.0011875,0.0114882507,0.0006435006,0.0,1.0,0.0
1.5.11.5.6-5,SI-B--2A55,"(ELV3) FINAL EL. LOAD DATA FOR LV",7112,"CCGTD1_IPS",TT_FinMile,"61441",-,-,-,100,TK_Complete,25/06/2017,12/06/2017,25/06/2017,12/06/2017,"SP-B--2-56 FS,SI-B--2A50 FS,SP1MKC2-85 FS,SI-3412-09 FS,SP1MKA2-85 FS,SI-SG-2-26 FS","SP-B--2-56,SI-B--2A50,SP1MKC2-85,SI-3412-09,SP1MKA2-85,SI-SG-2-26","SI-B--2-30 FS,SI-C--2C55 FS,SI-BF-2-55 FS,SI-B--4-54 FS,SP-B--2-58 FS","SI-B--2-30,SI-C--2C55,SI-BF-2-55,SI-B--4-54,SP-B--2-58",99,134,99,134,23,31,23,31,8,,"CCGT D1_Integrated Programme Schedule;OEM (Engineering & Deliverables);WHOLE PLANT / GENERAL ACTIVITIES;GENERAL ELECTRICAL ENGINEERING/ ERECTION;Electrical Consumer List (VEL)",6,5,0.0000103924,0.004069176,0.0026449644,0,1.0,0.0000812387,0.0410958904,0.0153846154,0.0156875,0.0104438642,0.0083655084,0.0,1.0,0.0
1.5.11.5.7,61440,"Specification for Black Box Systems",7112,"CCGTD1_IPS",WBS,"61439",,,,100,Complete,13/01/2017,14/12/2016,13/01/2017,14/12/2016,,,,,76,108,76,108,17,25,17,25,,,"CCGT D1_Integrated Programme Schedule;OEM (Engineering & Deliverables);WHOLE PLANT / GENERAL ACTIVITIES;GENERAL ELECTRICAL ENGINEERING/ ERECTION"
1.5.11.5.7-1,SI-3062-17,"FINAL EL.SPECS. (BLACK BOXES, MOTORS)",7112,"CCGTD1_IPS",TT_FinMile,"61440",-,-,-,100,TK_Complete,13/01/2017,14/12/2016,13/01/2017,14/12/2016,"","","SI1LCA2B80 FS,SI-EK-2-80 FS,SI1PDB2-80 FS,SI1LAC2B80 FS,SI1PGB2D80 FS,SI1PGB2B80 FS,SI1PGB2C80 FS,SI1LCB2B80 FS,SI1SMM2-80 FS,SI1PBB2B95 FS,SI1PCB2B80 FS,SI1PAH2-80 FS","SI1LCA2B80,SI-EK-2-80,SI1PDB2-80,SI1LAC2B80,SI1PGB2D80,SI1PGB2B80,SI1PGB2C80,SI1LCB2B80,SI1SMM2-80,SI1PBB2B95,SI1PCB2B80,SI1PAH2-80",76,108,76,108,17,25,17,25,1,,"CCGT D1_Integrated Programme Schedule;OEM (Engineering & Deliverables);WHOLE PLANT / GENERAL ACTIVITIES;GENERAL ELECTRICAL ENGINEERING/ ERECTION;Specification for Black Box Systems",0,12,0.0,0.0266531027,0.0,0,1.0,0.0000812387,0.0,0.0369230769,0.0,0.0684073107,0.0,0.0,1.0,0.0
1.5.11.6,61435,"GENERAL MECHANICAL ENGINEERING/ ERECTION",7112,"CCGTD1_IPS",WBS,"61412",,,,100,Complete,26/11/2016,03/11/2016,14/08/2018,29/11/2018,,,,,69,102,158,210,16,24,37,49,,,"CCGT D1_Integrated Programme Schedule;OEM (Engineering & Deliverables);WHOLE PLANT / GENERAL ACTIVITIES"
1.5.11.6.1,61438,"Fire Main incl. Valves, Hydrants, etc.",7112,"CCGTD1_IPS",WBS,"61435",,,,100,Complete,30/08/2017,18/08/2017,24/07/2018,29/11/2018,,,,,109,144,155,210,25,33,36,49,,,"CCGT D1_Integrated Programme Schedule;OEM (Engineering & Deliverables);WHOLE PLANT / GENERAL ACTIVITIES;GENERAL MECHANICAL ENGINEERING/ ERECTION"
1.5.11.6.1-1,SI-SGA4A40,"(OTD-OS) ON SITE FIRE FIGHTING RING MAIN SGA",7112,"CCGTD1_IPS",TT_FinMile,"61438",-,-,-,100,TK_Complete,24/07/2018,29/11/2018,24/07/2018,29/11/2018,"SI-SGA4A42 FS","SI-SGA4A42","","",155,210,155,210,36,49,36,49,32,,"CCGT D1_Integrated Programme Schedule;OEM (Engineering & Deliverables);WHOLE PLANT / GENERAL ACTIVITIES;GENERAL MECHANICAL ENGINEERING/ ERECTION;Fire Main incl. Valves, Hydrants, etc.",1,0,0.0,0.0,0.0006103764,0,1.0,0.0000812387,0.0068493151,0.0,0.0,0.0,0.0019305019,0.0,1.0,0.0
1.5.11.6.1-2,SI-SGA3A25,"DETAIL DESIGN, MANUFACTURING, SHOP TEST FIRE FIGHTING RING MAIN SGA",7112,"CCGTD1_IPS",TT_Task,"61438",-,-,-,100,TK_Complete,30/08/2017,18/08/2017,27/12/2017,15/11/2018,"","","SI-SGA3A80 FS","SI-SGA3A80",109,144,126,208,25,33,29,48,11,,"CCGT D1_Integrated Programme Schedule;OEM (Engineering & Deliverables);WHOLE PLANT / GENERAL ACTIVITIES;GENERAL MECHANICAL ENGINEERING/ ERECTION;Fire Main incl. Valves, Hydrants, etc.",0,1,0.0,0.0006103764,0.0,119,0.0,0.0000812387,0.0,0.0030769231,0.0,0.0015665796,0.0,0.2668161435,0.0,0.0
1.5.11.6.1-3,SI-SGA4A42,"TRANSPORT FIRE FIGHTING RING MAIN SGA",7112,"CCGTD1_IPS",TT_Task,"61438",-,-,-,100,TK_Complete,30/05/2018,21/11/2018,24/07/2018,29/11/2018,"SI-SGA3A80 FS","SI-SGA3A80","SI-SGA4A40 FS","SI-SGA4A40",148,209,155,210,34,48,36,49,29,,"CCGT D1_Integrated Programme Schedule;OEM (Engineering & Deliverables);WHOLE PLANT / GENERAL ACTIVITIES;GENERAL MECHANICAL ENGINEERING/ ERECTION;Fire Main incl. Valves, Hydrants, etc.",1,1,0.0000000828,0.0002034588,0.0004069176,55,1.0,0.0001503957,0.0068493151,0.0030769231,0.000125,0.0005221932,0.0012870013,0.1233183857,1.0,0.0283369572
1.5.11.6.1-4,SI-SGA3A80,"(RFS) READY FOR SHIPMENT FIRE FIGHTING RING MAIN SGA",7112,"CCGTD1_IPS",TT_FinMile,"61438",-,-,-,100,TK_Complete,29/05/2018,20/11/2018,29/05/2018,20/11/2018,"SI-SGA3A25 FS","SI-SGA3A25","SI-SGA4A42 FS","SI-SGA4A42",147,209,147,209,34,48,34,48,29,,"CCGT D1_Integrated Programme Schedule;OEM (Engineering & Deliverables);WHOLE PLANT / GENERAL ACTIVITIES;GENERAL MECHANICAL ENGINEERING/ ERECTION;Fire Main incl. Valves, Hydrants, etc.",1,1,0.0000000828,0.0004069176,0.0002034588,0,1.0,0.0000812387,0.0068493151,0.0030769231,0.000125,0.0010443864,0.0006435006,0.0,1.0,0.0
1.5.11.6.2,61437,"Sump Pumps GM-/GKB/GHD/UGU",7112,"CCGTD1_IPS",WBS,"61435",,,,100,Complete,26/11/2017,26/10/2017,14/08/2018,25/11/2018,,,,,121,153,158,210,28,35,37,49,,,"CCGT D1_Integrated Programme Schedule;OEM (Engineering & Deliverables);WHOLE PLANT / GENERAL ACTIVITIES;GENERAL MECHANICAL ENGINEERING/ ERECTION"
1.5.11.6.2-1,SI-GM-3B80,"(RFS) READY FOR SHIPMENT SUMP PUMP GM/UGU",7112,"CCGTD1_IPS",TT_FinMile,"61437",-,-,-,100,TK_Complete,15/06/2018,12/10/2018,15/06/2018,12/10/2018,"SI-GM-3B25 FS","SI-GM-3B25","SI-GM-4B25 SS","SI-GM-4B25",150,204,150,204,35,47,35,47,30,,"CCGT D1_Integrated Programme Schedule;OEM (Engineering & Deliverables);WHOLE PLANT / GENERAL ACTIVITIES;GENERAL MECHANICAL ENGINEERING/ ERECTION;Sump Pumps GM-/GKB/GHD/UGU",1,1,0.0000000828,0.0004069176,0.0002034588,0,1.0,0.0000812387,0.0068493151,0.0030769231,0.000125,0.0010443864,0.0006435006,0.0,1.0,0.0
1.5.11.6.2-2,SI-GM-3B25,"DETAIL DESIGN, MANUFACTURING, SHOP TEST SUMP PUMP GM/UGU",7112,"CCGTD1_IPS",TT_Task,"61437",-,-,-,100,TK_Complete,26/11/2017,26/10/2017,25/04/2018,05/10/2018,"","","SI-GM-3B80 FS","SI-GM-3B80",121,153,143,203,28,35,33,47,15,,"CCGT D1_Integrated Programme Schedule;OEM (Engineering & Deliverables);WHOLE PLANT / GENERAL ACTIVITIES;GENERAL MECHANICAL ENGINEERING/ ERECTION;Sump Pumps GM-/GKB/GHD/UGU",0,1,0.0,0.0006103764,0.0,150,0.0,0.0000812387,0.0,0.0030769231,0.0,0.0015665796,0.0,0.33632287,0.0,0.0
1.5.11.6.2-3,SI-GM-4B25,"TRANSPORT SUMP PUMP GM/UGU",7112,"CCGTD1_IPS",TT_Task,"61437",-,-,-,100,TK_Complete,16/06/2018,21/11/2018,14/08/2018,25/11/2018,"SI-GM-3B80 SS","SI-GM-3B80","SI-GM-4B27 FS","SI-GM-4B27",150,209,158,210,35,48,37,49,30,,"CCGT D1_Integrated Programme Schedule;OEM (Engineering & Deliverables);WHOLE PLANT / GENERAL ACTIVITIES;GENERAL MECHANICAL ENGINEERING/ ERECTION;Sump Pumps GM-/GKB/GHD/UGU",1,1,0.0000000828,0.0002034588,0.0004069176,59,1.0,0.0001503957,0.0068493151,0.0030769231,0.000125,0.0005221932,0.0012870013,0.1322869955,1.0,0.0283369572
1.5.11.6.2-4,SI-GM-4B27,"(OTD-OS) ON SITE SUMP PUMP GM/UGU",7112,"CCGTD1_IPS",TT_FinMile,"61437",-,-,-,100,TK_Complete,14/08/2018,25/11/2018,14/08/2018,25/11/2018,"SI-GM-4B25 FS","SI-GM-4B25","","",158,210,158,210,37,49,37,49,34,,"CCGT D1_Integrated Programme Schedule;OEM (Engineering & Deliverables);WHOLE PLANT / GENERAL ACTIVITIES;GENERAL MECHANICAL ENGINEERING/ ERECTION;Sump Pumps GM-/GKB/GHD/UGU",1,0,0.0,0.0,0.0006103764,0,1.0,0.0000812387,0.0068493151,0.0,0.0,0.0,0.0019305019,0.0,1.0,0.0
1.5.11.6.3,61436,"Ordering Module Skids",7112,"CCGTD1_IPS",WBS,"61435",,,,100,Complete,26/11/2016,03/11/2016,01/06/2017,30/04/2017,,,,,69,102,96,128,16,24,22,29,,,"CCGT D1_Integrated Programme Schedule;OEM (Engineering & Deliverables);WHOLE PLANT / GENERAL ACTIVITIES;GENERAL MECHANICAL ENGINEERING/ ERECTION"
1.5.11.6.3-1,SI---P2J85,"ORDER PLACED PREFAB. MODULES",7112,"CCGTD1_IPS",TT_Mile,"61436",-,-,-,100,TK_Complete,01/06/2017,30/04/2017,01/06/2017,30/04/2017,"SI---P2J80 FS","SI---P2J80","SI1UMY3B25 FS,SI1PXB3-10 FS,SI1UMC3X10 FS,SI1MAL3-10 FS,SI1UMC3Y10 FS,SI1LCA3-10 FS,SI1LAC3-10 FS,SI1UPY3-10 FS","SI1UMY3B25,SI1PXB3-10,SI1UMC3X10,SI1MAL3-10,SI1UMC3Y10,SI1LCA3-10,SI1LAC3-10,SI1UPY3-10",96,128,96,128,22,29,22,29,6,,"CCGT D1_Integrated Programme Schedule;OEM (Engineering & Deliverables);WHOLE PLANT / GENERAL ACTIVITIES;GENERAL MECHANICAL ENGINEERING/ ERECTION;Ordering Module Skids",1,8,0.0000031467,0.0065106816,0.0006103764,0,1.0,0.0000812387,0.0068493151,0.0246153846,0.00475,0.0167101828,0.0019305019,0.0,1.0,0.0
1.5.11.6.3-2,SI---P2J75,"PREPARATION RFQ PREFAB. MODULES",7112,"CCGTD1_IPS",TT_Task,"61436",-,-,-,100,TK_Complete,26/11/2016,03/11/2016,04/03/2017,28/02/2017,"SI----2C00 FS","SI----2C00","SI---P2J80 FS","SI---P2J80",69,102,83,119,16,24,19,27,1,,"CCGT D1_Integrated Programme Schedule;OEM (Engineering & Deliverables);WHOLE PLANT / GENERAL ACTIVITIES;GENERAL MECHANICAL ENGINEERING/ ERECTION;Ordering Module Skids",1,1,0.0000005797,0.0069175992,0.0002034588,98,0.0,0.0000904722,0.0068493151,0.0030769231,0.000875,0.0177545692,0.0006435006,0.2197309417,0.0,0.0037834085
1.5.11.6.3-3,SI---P2J80,"QUOTATION STAGE PREFAB. MODULES",7112,"CCGTD1_IPS",TT_Task,"61436",-,-,-,100,TK_Complete,16/03/2017,01/03/2017,18/05/2017,30/04/2017,"SI---P2J75 FS","SI---P2J75","SI---P2J85 FS","SI---P2J85",85,119,94,128,19,27,21,29,3,,"CCGT D1_Integrated Programme Schedule;OEM (Engineering & Deliverables);WHOLE PLANT / GENERAL ACTIVITIES;GENERAL MECHANICAL ENGINEERING/ ERECTION;Ordering Module Skids",1,1,0.0000019046,0.0067141404,0.0004069176,63,1.0,0.0001582529,0.0068493151,0.0030769231,0.002875,0.017232376,0.0012870013,0.1412556054,1.0,0.0315564018
1.5.11.7,61433,"GENERAL DESIGN ACTIVITIES (SPEL)",7112,"CCGTD1_IPS",WBS,"61412",,,,100,Complete,01/10/2016,20/08/2016,13/12/2017,13/12/2017,,,,,61,92,124,160,14,21,28,37,,,"CCGT D1_Integrated Programme Schedule;OEM (Engineering & Deliverables);WHOLE PLANT / GENERAL ACTIVITIES"
1.5.11.7.1,61434,"General Layout (Plot Plan)",7112,"CCGTD1_IPS",WBS,"61433",,,,100,Complete,01/10/2016,20/08/2016,13/12/2017,13/12/2017,,,,,61,92,124,160,14,21,28,37,,,"CCGT D1_Integrated Programme Schedule;OEM (Engineering & Deliverables);WHOLE PLANT / GENERAL ACTIVITIES;GENERAL DESIGN ACTIVITIES (SPEL)"
1.5.11.8,61429,"GENERAL CIVIL ACTIVITIES",7112,"CCGTD1_IPS",WBS,"61412",,,,100,Complete,01/10/2016,05/08/2016,25/07/2017,25/06/2017,,,,,61,90,103,136,14,21,24,31,,,"CCGT D1_Integrated Programme Schedule;OEM (Engineering & Deliverables);WHOLE PLANT / GENERAL ACTIVITIES"
1.5.11.8.1,61432,"Power Block Layout Planning",7112,"CCGTD1_IPS",WBS,"61429",,,,100,Complete,01/10/2016,05/08/2016,25/07/2017,25/06/2017,,,,,61,90,103,136,14,21,24,31,,,"CCGT D1_Integrated Programme Schedule;OEM (Engineering & Deliverables);WHOLE PLANT / GENERAL ACTIVITIES;GENERAL CIVIL ACTIVITIES"
1.5.11.8.1-1,SI-3412-20,"(C) BASIC DESIGN PLANT LAYOUT DWGS AVAILABLE FOR UMC BUILDING",7112,"CCGTD1_IPS",TT_FinMile,"61432",-,-,-,100,TK_Complete,21/02/2017,16/01/2017,21/02/2017,16/01/2017,"SI-3412A15 FS","SI-3412A15","SI1ULA2-45 FS,SI1UBD2-60 FS,SI-SG-2-35 FS,SI1UMC2A60 FS,SI1UMY2-45 FS,SI1UEN2-45 FS,SI0UEN2-45 FS,SI0UGY2-45 FS,SI1UMC2-45 FS,SI1UEZ2-45 FS,SI1UBF2-45 FS,SI1UHX2-45 FS,SI1UHW2-45 FS,SI1UMX2-45 FS,SI1UTX2-45 FS,SI1UMC2Y45 FS,SI1UBL2-45 FS,SI0UBN2-45 FS,SI1UQA2E77 FS,SI1ULD2-45 FS,SI1UBL2-60 FS,SI1UBD2-45 FS,SI1UHA2-45 FS,SI1HA-2A15 FS","SI1ULA2-45,SI1UBD2-60,SI-SG-2-35,SI1UMC2A60,SI1UMY2-45,SI1UEN2-45,SI0UEN2-45,SI0UGY2-45,SI1UMC2-45,SI1UEZ2-45,SI1UBF2-45,SI1UHX2-45,SI1UHW2-45,SI1UMX2-45,SI1UTX2-45,SI1UMC2Y45,SI1UBL2-45,SI0UBN2-45,SI1UQA2E77,SI1ULD2-45,SI1UBL2-60,SI1UBD2-45,SI1UHA2-45,SI1HA-2A15",81,113,81,113,19,26,19,26,2,,"CCGT D1_Integrated Programme Schedule;OEM (Engineering & Deliverables);WHOLE PLANT / GENERAL ACTIVITIES;GENERAL CIVIL ACTIVITIES;Power Block Layout Planning",1,24,0.0000028983,0.014242116,0.0002034588,0,1.0,0.0000812387,0.0068493151,0.0738461538,0.004375,0.0365535248,0.0006435006,0.0,1.0,0.0
1.5.11.8.1-2,SI-3412A15,"BASIC DESIGN PLANT LAYOUT",7112,"CCGTD1_IPS",TT_Task,"61432",-,-,-,100,TK_Complete,19/01/2017,15/12/2016,11/03/2017,08/03/2017,"","","SI-3412-40# FF,SI-3412-40# SS,SI-3412-20 FS","SI-3412-40#,SI-3412-40#,SI-3412-20",77,108,84,120,18,25,19,28,1,,"CCGT D1_Integrated Programme Schedule;OEM (Engineering & Deliverables);WHOLE PLANT / GENERAL ACTIVITIES;GENERAL CIVIL ACTIVITIES;Power Block Layout Planning",0,1,0.0,0.0144455748,0.0,51,0.0,0.0000812387,0.0,0.0030769231,0.0,0.037075718,0.0,0.1143497758,0.0,0.0
1.5.11.8.1-3,SI-3022-05,"GENERAL DESIGN CRITERIA FOR STRUCTURAL ENGINEERING FINALISED FOR HRSG ORDER (Phase 1)",7112,"CCGTD1_IPS",TT_FinMile,"61432",-,-,-,100,TK_Complete,01/10/2016,05/08/2016,01/10/2016,05/08/2016,"SI1HA-2-72 FS","SI1HA-2-72","SI1HA-2-77 FS","SI1HA-2-77",61,90,61,90,14,21,14,21,0,,"CCGT D1_Integrated Programme Schedule;OEM (Engineering & Deliverables);WHOLE PLANT / GENERAL ACTIVITIES;GENERAL CIVIL ACTIVITIES;Power Block Layout Planning",1,1,0.0,0.0128179044,0.0002034588,0,1.0,0.0000812387,0.0068493151,0.0030769231,0.0,0.0328981723,0.0006435006,0.0,1.0,0.0
1.5.11.8.1-4,SI-3412-09,"FINAL AND COMPLETE ROOM NUMBERS ASSIGNED TO EQUIPMENT",7112,"CCGTD1_IPS",TT_FinMile,"61432",-,-,-,100,TK_Complete,25/07/2017,25/06/2017,25/07/2017,25/06/2017,"","","SI1CJ-2-50 FS,SI-B--2A55 FS,SI-3412-08# FF,SI-C--2-55 FS","SI1CJ-2-50,SI-B--2A55,SI-3412-08#,SI-C--2-55",103,136,103,136,24,31,24,31,9,,"CCGT D1_Integrated Programme Schedule;OEM (Engineering & Deliverables);WHOLE PLANT / GENERAL ACTIVITIES;GENERAL CIVIL ACTIVITIES;Power Block Layout Planning",0,3,0.0,0.0052899288,0.0,0,1.0,0.0000812387,0.0,0.0092307692,0.0,0.0135770235,0.0,0.0,1.0,0.0
1.5.11.8.1-5,SI-3412-11,"LIST OF ALL ROOM NUMBERS AVAILABLE",7112,"CCGTD1_IPS",TT_FinMile,"61432",-,-,-,100,TK_Complete,23/03/2017,08/03/2017,23/03/2017,08/03/2017,"","","SI-3412-08# SS","SI-3412-08#",86,120,86,120,20,28,20,28,3,,"CCGT D1_Integrated Programme Schedule;OEM (Engineering & Deliverables);WHOLE PLANT / GENERAL ACTIVITIES;GENERAL CIVIL ACTIVITIES;Power Block Layout Planning",0,0,0.0,0.0,0.0,0,1.0,0.0000812387,0.0,0.0,0.0,0.0,0.0,0.0,1.0,0.0
1.5.11.8.2,61431,"General Layout (Plot Plan)",7112,"CCGTD1_IPS",WBS,"61429",,,,100,Complete,01/10/2016,20/08/2016,30/04/2017,28/04/2017,,,,,61,92,91,128,14,21,21,29,,,"CCGT D1_Integrated Programme Schedule;OEM (Engineering & Deliverables);WHOLE PLANT / GENERAL ACTIVITIES;GENERAL CIVIL ACTIVITIES"
1.5.11.8.2-1,SI-3412A00,"CONCEPT DESIGN (part I) PLOT PLAN",7112,"CCGTD1_IPS",TT_Task,"61431",-,-,-,100,TK_Complete,01/10/2016,20/08/2016,27/10/2016,16/09/2016,"","","SI-3412-07 FS,SI-3412-00# SS","SI-3412-07,SI-3412-00#",61,92,65,96,14,21,15,22,0,,"CCGT D1_Integrated Programme Schedule;OEM (Engineering & Deliverables);WHOLE PLANT / GENERAL ACTIVITIES;GENERAL CIVIL ACTIVITIES;General Layout (Plot Plan)",0,1,0.0,0.0002034588,0.0,26,0.8,0.0000812387,0.0,0.0030769231,0.0,0.0005221932,0.0,0.0582959641,0.8,0.0
1.5.11.8.2-2,SI-3412-07,"PRELIMINARY EXTERNAL WORKS DESIGN AVAILABLE",7112,"CCGTD1_IPS",TT_FinMile,"61431",-,-,-,100,TK_Complete,28/10/2016,16/09/2016,28/10/2016,16/09/2016,"SI-3412A00 FS","SI-3412A00","","",65,96,65,96,15,22,15,22,0,,"CCGT D1_Integrated Programme Schedule;OEM (Engineering & Deliverables);WHOLE PLANT / GENERAL ACTIVITIES;GENERAL CIVIL ACTIVITIES;General Layout (Plot Plan)",1,0,0.0,0.0,0.0002034588,0,1.0,0.0000812387,0.0068493151,0.0,0.0,0.0,0.0006435006,0.0,1.0,0.0
1.5.11.8.2-3,CP-3412-35,"REVIEW BY CLIENT FOR CONCEPT DESIGN DOCUMENTS",7112,"CCGTD1_IPS",TT_Task,"61431",-,-,-,100,TK_Complete,01/03/2017,28/02/2017,21/03/2017,20/03/2017,"","","","",83,119,85,122,19,27,20,28,3,,"CCGT D1_Integrated Programme Schedule;OEM (Engineering & Deliverables);WHOLE PLANT / GENERAL ACTIVITIES;GENERAL CIVIL ACTIVITIES;General Layout (Plot Plan)",0,0,0.0,0.0,0.0,20,1.0,0.0000812387,0.0,0.0,0.0,0.0,0.0,0.0448430493,1.0,0.0
1.5.11.8.2-4,SI-3412D30,"FINAL HYDRAULIC DESIGN AVAILABLE",7112,"CCGTD1_IPS",TT_FinMile,"61431",-,-,-,100,TK_Complete,30/04/2017,28/04/2017,30/04/2017,28/04/2017,"","","","",91,128,91,128,21,29,21,29,4,,"CCGT D1_Integrated Programme Schedule;OEM (Engineering & Deliverables);WHOLE PLANT / GENERAL ACTIVITIES;GENERAL CIVIL ACTIVITIES;General Layout (Plot Plan)",0,0,0.0,0.0,0.0,0,1.0,0.0000812387,0.0,0.0,0.0,0.0,0.0,0.0,1.0,0.0
1.5.11.8.3,61430,"Steel Works / Embedded Parts Tendering",7112,"CCGTD1_IPS",WBS,"61429",,,,100,Complete,14/02/2017,18/01/2017,18/05/2017,24/04/2017,,,,,80,113,94,127,18,26,21,29,,,"CCGT D1_Integrated Programme Schedule;OEM (Engineering & Deliverables);WHOLE PLANT / GENERAL ACTIVITIES;GENERAL CIVIL ACTIVITIES"
1.5.11.8.3-1,SI-U--2B85,"ORDER PLACED STEEL WORKS (excl.EMBEDDED PARTS)",7112,"CCGTD1_IPS",TT_Mile,"61430",-,-,-,100,TK_Complete,18/05/2017,24/04/2017,18/05/2017,24/04/2017,"SI-U--2B87 FS","SI-U--2B87","SI1ULA3B27 FS,SI1UMC3B27 FS,SI1UMC3B25 FS,SI1UHW3B27 FS,SI1UMY3B25 FS","SI1ULA3B27,SI1UMC3B27,SI1UMC3B25,SI1UHW3B27,SI1UMY3B25",94,127,94,127,21,29,21,29,5,,"CCGT D1_Integrated Programme Schedule;OEM (Engineering & Deliverables);WHOLE PLANT / GENERAL ACTIVITIES;GENERAL CIVIL ACTIVITIES;Steel Works / Embedded Parts Tendering",1,5,0.0000007453,0.0018311292,0.0004069176,0,1.0,0.0000812387,0.0068493151,0.0153846154,0.001125,0.0046997389,0.0012870013,0.0,1.0,0.0
1.5.11.8.3-2,SI-U--2B10,"RFQ STEEL WORKS (excl.EMBEDDED PARTS)",7112,"CCGTD1_IPS",TT_Mile,"61430",-,-,-,100,TK_Complete,14/02/2017,18/01/2017,14/02/2017,18/01/2017,"","","SI-U--2B87 FS","SI-U--2B87",80,113,80,113,18,26,18,26,2,,"CCGT D1_Integrated Programme Schedule;OEM (Engineering & Deliverables);WHOLE PLANT / GENERAL ACTIVITIES;GENERAL CIVIL ACTIVITIES;Steel Works / Embedded Parts Tendering",0,1,0.0,0.0022380468,0.0,0,1.0,0.0000812387,0.0,0.0030769231,0.0,0.0057441253,0.0,0.0,1.0,0.0
1.5.11.8.3-3,SI-U--2B87,"QUOTATION STAGE STEEL WORKS (excl.EMBEDDED PARTS)",7112,"CCGTD1_IPS",TT_Task,"61430",-,-,-,100,TK_Complete,14/02/2017,18/01/2017,12/04/2017,23/04/2017,"SI-U--2B10 FS","SI-U--2B10","SI-U--2B85 FS","SI-U--2B85",80,113,89,127,18,26,20,29,2,,"CCGT D1_Integrated Programme Schedule;OEM (Engineering & Deliverables);WHOLE PLANT / GENERAL ACTIVITIES;GENERAL CIVIL ACTIVITIES;Steel Works / Embedded Parts Tendering",1,1,0.000000414,0.002034588,0.0002034588,57,0.0,0.0001503957,0.0068493151,0.0030769231,0.000625,0.0052219321,0.0006435006,0.1278026906,0.0,0.0283369572
1.5.11.9,61424,"GENERAL PLANT CONCEPTS",7112,"CCGTD1_IPS",WBS,"61412",,,,100,Complete,09/07/2016,11/06/2016,05/04/2017,20/03/2017,,,,,49,82,88,122,11,19,20,28,,,"CCGT D1_Integrated Programme Schedule;OEM (Engineering & Deliverables);WHOLE PLANT / GENERAL ACTIVITIES"
1.5.11.9.1,61428,"Noise Protection Concept",7112,"CCGTD1_IPS",WBS,"61424",,,,100,Complete,01/10/2016,11/06/2016,05/04/2017,26/12/2016,,,,,61,82,88,110,14,19,20,25,,,"CCGT D1_Integrated Programme Schedule;OEM (Engineering & Deliverables);WHOLE PLANT / GENERAL ACTIVITIES;GENERAL PLANT CONCEPTS"
1.5.11.9.1-1,SI-3412-40,"NOISE PROTECTION CONCEPT",7112,"CCGTD1_IPS",TT_Task,"61428",-,-,-,100,TK_Complete,01/10/2016,11/06/2016,05/04/2017,26/12/2016,"","","SI1HA-2-77 FS","SI1HA-2-77",61,82,88,110,14,19,20,25,0,,"CCGT D1_Integrated Programme Schedule;OEM (Engineering & Deliverables);WHOLE PLANT / GENERAL ACTIVITIES;GENERAL PLANT CONCEPTS;Noise Protection Concept",0,1,0.0,0.0128179044,0.0,186,0.0,0.0000812387,0.0,0.0030769231,0.0,0.0328981723,0.0,0.4170403587,0.0,0.0
1.5.11.9.2,61427,"Fire and Explosion Protection Concept - Siemens Scope",7112,"CCGTD1_IPS",WBS,"61424",,,,100,Complete,14/02/2017,01/02/2017,31/03/2017,20/03/2017,,,,,80,115,87,122,18,27,20,28,,,"CCGT D1_Integrated Programme Schedule;OEM (Engineering & Deliverables);WHOLE PLANT / GENERAL ACTIVITIES;GENERAL PLANT CONCEPTS"
1.5.11.9.2-1,SI-SG-2-35,"PREPARATION FINAL FIRE- / EXPLOSION PROT. CONCEPT AND ESCAPE ROUTE/FIRE PROTECTION DWGs",7112,"CCGTD1_IPS",TT_Task,"61427",-,-,-,100,TK_Complete,14/02/2017,01/02/2017,13/03/2017,08/03/2017,"SI-3412-20 FS","SI-3412-20","SI-SG-2-50 FS","SI-SG-2-50",80,115,84,120,18,27,19,28,2,,"CCGT D1_Integrated Programme Schedule;OEM (Engineering & Deliverables);WHOLE PLANT / GENERAL ACTIVITIES;GENERAL PLANT CONCEPTS;Fire and Explosion Protection Concept - Siemens Scope",1,1,0.0000019046,0.0046795524,0.0004069176,27,0.2,0.0000840132,0.0068493151,0.0030769231,0.002875,0.0120104439,0.0012870013,0.0605381166,0.2,0.0011368467
1.5.11.9.2-2,SI-SG-2-50,"FINAL ESCAPE ROUTE AND FIRE PROTECTION DWGS AVAILABLE",7112,"CCGTD1_IPS",TT_FinMile,"61427",-,-,-,100,TK_Complete,18/03/2017,08/03/2017,18/03/2017,08/03/2017,"SI-SG-2-35 FS","SI-SG-2-35","SI-SG-2-26 FS","SI-SG-2-26",85,120,85,120,19,28,19,28,3,,"CCGT D1_Integrated Programme Schedule;OEM (Engineering & Deliverables);WHOLE PLANT / GENERAL ACTIVITIES;GENERAL PLANT CONCEPTS;Fire and Explosion Protection Concept - Siemens Scope",1,1,0.0000027327,0.0044760936,0.0006103764,0,1.0,0.0000812387,0.0068493151,0.0030769231,0.004125,0.0114882507,0.0019305019,0.0,1.0,0.0
1.5.11.9.2-3,SI-SG-2-26,"DESIGN REVIEW - EXPLOSION PROTECTION (ATEX / IEC60079)",7112,"CCGTD1_IPS",TT_FinMile,"61427",-,-,-,100,TK_Complete,31/03/2017,20/03/2017,31/03/2017,20/03/2017,"SI-SG-2-50 FS","SI-SG-2-50","SI-B--2A55 FS","SI-B--2A55",87,122,87,122,20,28,20,28,3,,"CCGT D1_Integrated Programme Schedule;OEM (Engineering & Deliverables);WHOLE PLANT / GENERAL ACTIVITIES;GENERAL PLANT CONCEPTS;Fire and Explosion Protection Concept - Siemens Scope",1,1,0.0000034779,0.0042726348,0.0008138352,0,1.0,0.0000812387,0.0068493151,0.0030769231,0.00525,0.0109660574,0.0025740026,0.0,1.0,0.0
1.5.11.9.3,61426,"Design Criteria Siemens Scope",7112,"CCGTD1_IPS",WBS,"61424",,,,100,Complete,03/11/2016,03/11/2016,14/12/2016,14/12/2016,,,,,66,102,72,108,15,24,16,25,,,"CCGT D1_Integrated Programme Schedule;OEM (Engineering & Deliverables);WHOLE PLANT / GENERAL ACTIVITIES;GENERAL PLANT CONCEPTS"
1.5.11.9.3-1,SI-3022-39,"GENERAL DESIGN CRITERIA (SIEMENS SCOPE ONLY)",7112,"CCGTD1_IPS",TT_Task,"61426",-,-,-,100,TK_Complete,03/11/2016,03/11/2016,14/12/2016,14/12/2016,"SI-3412-50 FS,SI----2C00 FS","SI-3412-50,SI----2C00","","",66,102,72,108,15,24,16,25,0,,"CCGT D1_Integrated Programme Schedule;OEM (Engineering & Deliverables);WHOLE PLANT / GENERAL ACTIVITIES;GENERAL PLANT CONCEPTS;Design Criteria Siemens Scope",2,0,0.0,0.0,0.0004069176,41,1.0,0.0001542587,0.0136986301,0.0,0.0,0.0,0.0012870013,0.0919282511,1.0,0.0299198117
1.5.11.9.4,61425,"Evironmental Conditions",7112,"CCGTD1_IPS",WBS,"61424",,,,100,Complete,09/07/2016,09/07/2016,04/08/2016,05/08/2016,,,,,49,86,53,90,11,20,12,21,,,"CCGT D1_Integrated Programme Schedule;OEM (Engineering & Deliverables);WHOLE PLANT / GENERAL ACTIVITIES;GENERAL PLANT CONCEPTS"
1.5.11.9.4-1,SI-3412-50,"SEISMIC REPORT",7112,"CCGTD1_IPS",TT_Task,"61425",-,-,-,100,TK_Complete,09/07/2016,09/07/2016,04/08/2016,05/08/2016,"","","SI-3022-39 FS","SI-3022-39",49,86,53,90,11,20,12,21,0,,"CCGT D1_Integrated Programme Schedule;OEM (Engineering & Deliverables);WHOLE PLANT / GENERAL ACTIVITIES;GENERAL PLANT CONCEPTS;Evironmental Conditions",0,1,0.0,0.0002034588,0.0,26,1.0,0.0000812387,0.0,0.0030769231,0.0,0.0005221932,0.0,0.0582959641,1.0,0.0
1.5.11.10,61418,"DOCUMENTATION",7112,"CCGTD1_IPS",WBS,"61412",,,,100,Complete,31/03/2017,31/03/2017,09/02/2019,,,,,,87,124,184,,20,28,43,,,,"CCGT D1_Integrated Programme Schedule;OEM (Engineering & Deliverables);WHOLE PLANT / GENERAL ACTIVITIES"
1.5.11.10.1,61423,"System Documents",7112,"CCGTD1_IPS",WBS,"61418",,,,100,Complete,31/03/2017,31/03/2017,31/03/2017,31/03/2017,,,,,87,124,87,124,20,28,20,28,,,"CCGT D1_Integrated Programme Schedule;OEM (Engineering & Deliverables);WHOLE PLANT / GENERAL ACTIVITIES;DOCUMENTATION"
1.5.11.10.1-1,SI-M--2D20,"SYSTEM DOCUMENTS [external interfaces final]",7112,"CCGTD1_IPS",TT_FinMile,"61423",-,-,-,100,TK_Complete,31/03/2017,31/03/2017,31/03/2017,31/03/2017,"SI----2D00 FS","SI----2D00","","",87,124,87,124,20,28,20,28,3,,"CCGT D1_Integrated Programme Schedule;OEM (Engineering & Deliverables);WHOLE PLANT / GENERAL ACTIVITIES;DOCUMENTATION;System Documents",1,0,0.0,0.0,0.0002034588,0,1.0,0.0000812387,0.0068493151,0.0,0.0,0.0,0.0006435006,0.0,1.0,0.0
1.5.11.10.2,61422,"Layout Documents",7112,"CCGTD1_IPS",WBS,"61418",,,,100,Complete,31/03/2017,31/03/2017,01/04/2017,31/03/2017,,,,,87,124,87,124,20,28,20,28,,,"CCGT D1_Integrated Programme Schedule;OEM (Engineering & Deliverables);WHOLE PLANT / GENERAL ACTIVITIES;DOCUMENTATION"
1.5.11.10.2-1,SI-MB-2-20,"LAYOUT DOCUMENTS AIR INTAKE, EXHAUST GAS SYSTEM [external interfaces final]",7112,"CCGTD1_IPS",TT_FinMile,"61422",-,-,-,100,TK_Complete,31/03/2017,31/03/2017,31/03/2017,31/03/2017,"SI----2D00 FS","SI----2D00","SI1UMC2J60 FS,SI1UMC2B60 FS,SI1UMC2-60 FS","SI1UMC2J60,SI1UMC2B60,SI1UMC2-60",87,124,87,124,20,28,20,28,3,,"CCGT D1_Integrated Programme Schedule;OEM (Engineering & Deliverables);WHOLE PLANT / GENERAL ACTIVITIES;DOCUMENTATION;Layout Documents",1,3,0.0000004596,0.003051882,0.0002034588,0,1.0,0.0000812387,0.0068493151,0.0092307692,0.00069375,0.0078328982,0.0006435006,0.0,1.0,0.0
1.5.11.10.2-2,SI-M--2C20,"LAYOUT DOCUMENTS [external interfaces final]",7112,"CCGTD1_IPS",TT_FinMile,"61422",-,-,-,100,TK_Complete,01/04/2017,31/03/2017,01/04/2017,31/03/2017,"SI----2D00 FS","SI----2D00","SI1UMC2G60 FS,SI1ULD2-60 FS,SI1UMC2J60 FS,SI1UMC2F60 FS,SI1UBD2-60 FS,SI1UMC2E60 FS,SI1UMC2-60 SS,SI1UMC2L60 FS,SI1UBF2B60 FS,SI1UMC2E60 SS","SI1UMC2G60,SI1ULD2-60,SI1UMC2J60,SI1UMC2F60,SI1UBD2-60,SI1UMC2E60,SI1UMC2-60,SI1UMC2L60,SI1UBF2B60,SI1UMC2E60",87,124,87,124,20,28,20,28,4,,"CCGT D1_Integrated Programme Schedule;OEM (Engineering & Deliverables);WHOLE PLANT / GENERAL ACTIVITIES;DOCUMENTATION;Layout Documents",1,9,0.000001238,0.0067141404,0.0002034588,0,1.0,0.0000812387,0.0068493151,0.0276923077,0.00186875,0.017232376,0.0006435006,0.0,1.0,0.0
1.5.11.10.3,61421,"SDS - Software Deliverable Schedule",7112,"CCGTD1_IPS",WBS,"61418",,,,,NotStart,,,,,,,,,,,,,,,,,,,"CCGT D1_Integrated Programme Schedule;OEM (Engineering & Deliverables);WHOLE PLANT / GENERAL ACTIVITIES;DOCUMENTATION"
1.5.11.10.4,61420,"Software Deliverables Construction/ Commissioning",7112,"CCGTD1_IPS",WBS,"61418",,,,100,Complete,06/09/2018,06/09/2018,09/02/2019,31/10/2019,,,,,162,198,184,258,37,46,43,60,,,"CCGT D1_Integrated Programme Schedule;OEM (Engineering & Deliverables);WHOLE PLANT / GENERAL ACTIVITIES;DOCUMENTATION"
1.5.11.10.4-1,SI-3512-40,"STEAM BLOWING INSTRUCTION",7112,"CCGTD1_IPS",TT_FinMile,"61420",-,-,-,100,TK_Complete,09/02/2019,31/10/2019,09/02/2019,31/10/2019,"SI----2C00 FS","SI----2C00","","",184,258,184,258,43,60,43,60,47,,"CCGT D1_Integrated Programme Schedule;OEM (Engineering & Deliverables);WHOLE PLANT / GENERAL ACTIVITIES;DOCUMENTATION;Software Deliverables Construction/ Commissioning",1,0,0.0,0.0,0.0002034588,0,1.0,0.0000812387,0.0068493151,0.0,0.0,0.0,0.0006435006,0.0,1.0,0.0
1.5.11.10.4-2,SI-3512E40,"COMMISSIONING MANUAL (TC) ON SITE/ CLIENT",7112,"CCGTD1_IPS",TT_FinMile,"61420",-,-,-,100,TK_Complete,28/10/2018,30/09/2018,28/10/2018,30/09/2018,"SI----2C00 FS","SI----2C00","","",169,202,169,202,39,47,39,47,38,,"CCGT D1_Integrated Programme Schedule;OEM (Engineering & Deliverables);WHOLE PLANT / GENERAL ACTIVITIES;DOCUMENTATION;Software Deliverables Construction/ Commissioning",1,0,0.0,0.0,0.0002034588,0,1.0,0.0000812387,0.0068493151,0.0,0.0,0.0,0.0006435006,0.0,1.0,0.0
1.5.11.10.4-3,SI-MAV2-01,"CLEANING INSTRUCTION TURBOSET LUBE AND LIFTING OIL SYSTEM",7112,"CCGTD1_IPS",TT_FinMile,"61420",-,-,-,100,TK_Complete,06/09/2018,06/09/2018,06/09/2018,06/09/2018,"SI----2C00 FS","SI----2C00","","",162,198,162,198,37,46,37,46,36,,"CCGT D1_Integrated Programme Schedule;OEM (Engineering & Deliverables);WHOLE PLANT / GENERAL ACTIVITIES;DOCUMENTATION;Software Deliverables Construction/ Commissioning",1,0,0.0,0.0,0.0002034588,0,1.0,0.0000812387,0.0068493151,0.0,0.0,0.0,0.0006435006,0.0,1.0,0.0
1.5.11.10.5,61419,"Operation & Maintenance Manuals",7112,"CCGTD1_IPS",WBS,"61418",,,,100,Complete,07/12/2018,07/12/2018,07/12/2018,07/12/2018,,,,,175,212,175,212,40,49,40,49,,,"CCGT D1_Integrated Programme Schedule;OEM (Engineering & Deliverables);WHOLE PLANT / GENERAL ACTIVITIES;DOCUMENTATION"
1.5.11.10.5-1,SI-1102-15,"PRELIMINARY OPERATING AND MAINTENANCE DOCUMENTATION (O&M)",7112,"CCGTD1_IPS",TT_FinMile,"61419",-,-,-,100,TK_Complete,07/12/2018,07/12/2018,07/12/2018,07/12/2018,"","","","",175,212,175,212,40,49,40,49,42,,"CCGT D1_Integrated Programme Schedule;OEM (Engineering & Deliverables);WHOLE PLANT / GENERAL ACTIVITIES;DOCUMENTATION;Operation & Maintenance Manuals",0,0,0.0,0.0,0.0,0,1.0,0.0000812387,0.0,0.0,0.0,0.0,0.0,0.0,1.0,0.0
1.5.11.11,61413,"MILESTONES",7112,"CCGTD1_IPS",WBS,"61412",,,,100,Complete,03/11/2016,16/04/2016,11/08/2019,23/01/2020,,,,,66,74,210,270,15,17,49,63,,,"CCGT D1_Integrated Programme Schedule;OEM (Engineering & Deliverables);WHOLE PLANT / GENERAL ACTIVITIES"
1.5.11.11.1,61417,"Key Dates Boiler (HRSG)",7112,"CCGTD1_IPS",WBS,"61413",,,,100,Complete,03/11/2016,03/11/2016,14/01/2017,19/12/2016,,,,,66,102,76,109,15,24,17,25,,,"CCGT D1_Integrated Programme Schedule;OEM (Engineering & Deliverables);WHOLE PLANT / GENERAL ACTIVITIES;MILESTONES"
1.5.11.11.1-1,SI-HA-2-85&,"PARTIAL ORDER PLACED HRSG",7112,"CCGTD1_IPS",TT_Mile,"61417",-,-,-,100,TK_Complete,03/11/2016,03/11/2016,03/11/2016,03/11/2016,"SI1HA-2-85 SS","SI1HA-2-85","","",66,102,66,102,15,24,15,24,0,,"CCGT D1_Integrated Programme Schedule;OEM (Engineering & Deliverables);WHOLE PLANT / GENERAL ACTIVITIES;MILESTONES;Key Dates Boiler (HRSG)"
1.5.11.11.1-2,SI-HA-2-87&,"ORDER PLACED HRSG",7112,"CCGTD1_IPS",TT_Mile,"61417",-,-,-,100,TK_Complete,14/01/2017,19/12/2016,14/01/2017,19/12/2016,"SI----2-007 SS","SI----2-007","","",76,109,76,109,17,25,17,25,1,,"CCGT D1_Integrated Programme Schedule;OEM (Engineering & Deliverables);WHOLE PLANT / GENERAL ACTIVITIES;MILESTONES;Key Dates Boiler (HRSG)"
1.5.11.11.2,61416,"BOP Option_Key Dates / Contract Schedule 3A (Programme Requirements & Constraints)",7112,"CCGTD1_IPS",WBS,"61413",,,,100,Complete,26/03/2018,28/02/2018,16/03/2019,23/01/2020,,,,,138,171,189,270,32,40,44,63,,,"CCGT D1_Integrated Programme Schedule;OEM (Engineering & Deliverables);WHOLE PLANT / GENERAL ACTIVITIES;MILESTONES"
1.5.11.11.2-1,SI1---3-39,"(BOP2) FUEL GAS SUPPLY PIPEWORK SYSTEM",7112,"CCGTD1_IPS",TT_FinMile,"61416",-,-,-,100,TK_Complete,08/06/2018,08/06/2018,08/06/2018,08/06/2018,"SI----2-005 FS","SI----2-005","","",149,186,149,186,34,43,34,43,30,,"CCGT D1_Integrated Programme Schedule;OEM (Engineering & Deliverables);WHOLE PLANT / GENERAL ACTIVITIES;MILESTONES;BOP Option_Key Dates / Contract Schedule 3A (Programme Requirements & Constraints)",1,0,0.0,0.0,0.0002034588,0,1.0,0.0000812387,0.0068493151,0.0,0.0,0.0,0.0006435006,0.0,1.0,0.0
1.5.11.11.2-2,SI1---3-43,"(BOP3) 6.6kV CONNECTION & HYDROGEN / CO2 / SUPPLY PIPEWORK & FUEL OIL FORWARDING SYSTEM",7112,"CCGTD1_IPS",TT_FinMile,"61416",-,-,-,100,TK_Complete,05/08/2018,05/08/2018,05/08/2018,05/08/2018,"SI----2-005 FS","SI----2-005","","",157,194,157,194,36,45,36,45,34,,"CCGT D1_Integrated Programme Schedule;OEM (Engineering & Deliverables);WHOLE PLANT / GENERAL ACTIVITIES;MILESTONES;BOP Option_Key Dates / Contract Schedule 3A (Programme Requirements & Constraints)",1,0,0.0,0.0,0.0002034588,0,1.0,0.0000812387,0.0068493151,0.0,0.0,0.0,0.0006435006,0.0,1.0,0.0
1.5.11.11.2-3,SI1---3-47,"(BOP1) FIRE FIGHTING CONNECTION PIPEWORK SYSTEM",7112,"CCGTD1_IPS",TT_FinMile,"61416",-,-,-,100,TK_Complete,26/03/2018,28/02/2018,26/03/2018,28/02/2018,"SI----2-005 FS","SI----2-005","","",138,171,138,171,32,40,32,40,23,,"CCGT D1_Integrated Programme Schedule;OEM (Engineering & Deliverables);WHOLE PLANT / GENERAL ACTIVITIES;MILESTONES;BOP Option_Key Dates / Contract Schedule 3A (Programme Requirements & Constraints)",1,0,0.0,0.0,0.0002034588,0,1.0,0.0000812387,0.0068493151,0.0,0.0,0.0,0.0006435006,0.0,1.0,0.0
1.5.11.11.2-4,SI1---3-49,"(BOP4) DELIVERY OF ALL BALANCE EQUIPMENT FOR CONNECTION WORKS",7112,"CCGTD1_IPS",TT_FinMile,"61416",-,-,-,100,TK_Complete,09/09/2018,25/10/2018,09/09/2018,25/10/2018,"SI----2-005 FS","SI----2-005","","",162,205,162,205,37,48,37,48,36,,"CCGT D1_Integrated Programme Schedule;OEM (Engineering & Deliverables);WHOLE PLANT / GENERAL ACTIVITIES;MILESTONES;BOP Option_Key Dates / Contract Schedule 3A (Programme Requirements & Constraints)",1,0,0.0,0.0,0.0002034588,0,1.0,0.0000812387,0.0068493151,0.0,0.0,0.0,0.0006435006,0.0,1.0,0.0
1.5.11.11.2-5,SI1---3-51,"(BOP5) COMPLETION AND SIGN OFF OF ALL CHECK SHEET TO ALLOW 1ST FIRE",7112,"CCGTD1_IPS",TT_FinMile,"61416",-,-,-,100,TK_Complete,16/03/2019,23/01/2020,16/03/2019,23/01/2020,"SI----2-005 FS","SI----2-005","","",189,270,189,270,44,63,44,63,48,,"CCGT D1_Integrated Programme Schedule;OEM (Engineering & Deliverables);WHOLE PLANT / GENERAL ACTIVITIES;MILESTONES;BOP Option_Key Dates / Contract Schedule 3A (Programme Requirements & Constraints)",1,0,0.0,0.0,0.0002034588,0,1.0,0.0000812387,0.0068493151,0.0,0.0,0.0,0.0006435006,0.0,1.0,0.0
1.5.11.11.3,61415,"Key Dates / Contract Schedule 3A (Programme Requirements & Constraints)",7112,"CCGTD1_IPS",WBS,"61413",,,,100,Complete,31/01/2017,16/04/2016,11/08/2019,23/01/2020,,,,,78,74,210,270,18,17,49,63,,,"CCGT D1_Integrated Programme Schedule;OEM (Engineering & Deliverables);WHOLE PLANT / GENERAL ACTIVITIES;MILESTONES"
1.5.11.11.3-1,SI1---2-00,"COMMENCEMENT OF AGREEMENT FOR ADVANCED ENGINEERING CONTRACT DATED 26-APR-2016",7112,"CCGTD1_IPS",TT_Mile,"61415",-,-,-,100,TK_Complete,11/08/2019,16/04/2016,11/08/2019,16/04/2016,"","","SI1---2-05 SF,SI1---2-10 SF","SI1---2-05,SI1---2-10",210,74,210,74,49,17,49,17,69,,"CCGT D1_Integrated Programme Schedule;OEM (Engineering & Deliverables);WHOLE PLANT / GENERAL ACTIVITIES;MILESTONES;Key Dates / Contract Schedule 3A (Programme Requirements & Constraints)",0,2,0.0,0.0004069176,0.0,0,1.0,0.0000812387,0.0,0.0061538462,0.0,0.0010443864,0.0,0.0,1.0,0.0
1.5.11.11.3-2,SI1---2-05,"(1a) COMPLETION AND SUBMISSION OF DATA FOR BD SUBMISSION",7112,"CCGTD1_IPS",TT_FinMile,"61415",-,-,-,100,TK_Complete,11/08/2019,18/06/2016,11/08/2019,18/06/2016,"SI1---2-00 SF","SI1---2-00","","",210,83,210,83,49,19,49,19,69,,"CCGT D1_Integrated Programme Schedule;OEM (Engineering & Deliverables);WHOLE PLANT / GENERAL ACTIVITIES;MILESTONES;Key Dates / Contract Schedule 3A (Programme Requirements & Constraints)",1,0,0.0,0.0,0.0002034588,0,1.0,0.0000812387,0.0068493151,0.0,0.0,0.0,0.0006435006,0.0,1.0,0.0
1.5.11.11.3-3,SI1---2-10,"(1b) COMPLETION AND SUBMISSION OF ALL OTHER DATA IN ATTACHMENT 1B",7112,"CCGTD1_IPS",TT_FinMile,"61415",-,-,-,100,TK_Complete,11/08/2019,18/06/2016,11/08/2019,18/06/2016,"SI1---2-00 SF","SI1---2-00","","",210,83,210,83,49,19,49,19,69,,"CCGT D1_Integrated Programme Schedule;OEM (Engineering & Deliverables);WHOLE PLANT / GENERAL ACTIVITIES;MILESTONES;Key Dates / Contract Schedule 3A (Programme Requirements & Constraints)",1,0,0.0,0.0,0.0002034588,0,1.0,0.0000812387,0.0068493151,0.0,0.0,0.0,0.0006435006,0.0,1.0,0.0
1.5.11.11.3-4,SI1---2-15,"(2) COMPLETION AND SUBMISSION OF ALL ENGINEERING FOR HRSG FOR BD SUBMISSION",7112,"CCGTD1_IPS",TT_FinMile,"61415",-,-,-,100,TK_Complete,31/01/2017,28/01/2017,31/01/2017,28/01/2017,"SI----2-005 FS","SI----2-005","","",78,115,78,115,18,26,18,26,1,,"CCGT D1_Integrated Programme Schedule;OEM (Engineering & Deliverables);WHOLE PLANT / GENERAL ACTIVITIES;MILESTONES;Key Dates / Contract Schedule 3A (Programme Requirements & Constraints)",1,0,0.0,0.0,0.0002034588,0,1.0,0.0000812387,0.0068493151,0.0,0.0,0.0,0.0006435006,0.0,1.0,0.0
1.5.11.11.3-5,SI1---3-00,"(3a) DELIVERY (ON-SITE) OF CAST-IN-PLACE EMBEDS FOR TURBINE TABLE AND TURBINE HALL",7112,"CCGTD1_IPS",TT_FinMile,"61415",-,-,-,100,TK_Complete,25/08/2017,20/07/2017,25/08/2017,20/07/2017,"SI----2-005 FS","SI----2-005","","",108,139,108,139,25,32,25,32,10,,"CCGT D1_Integrated Programme Schedule;OEM (Engineering & Deliverables);WHOLE PLANT / GENERAL ACTIVITIES;MILESTONES;Key Dates / Contract Schedule 3A (Programme Requirements & Constraints)",1,0,0.0,0.0,0.0002034588,0,1.0,0.0000812387,0.0068493151,0.0,0.0,0.0,0.0006435006,0.0,1.0,0.0
1.5.11.11.3-6,SI1---3-05,"(3b) DELIVERY (ON-SITE) OF CAST-IN-PLACE EMBEDS FOR HRSG AND STACK",7112,"CCGTD1_IPS",TT_FinMile,"61415",-,-,-,100,TK_Complete,25/09/2017,28/08/2017,25/09/2017,28/08/2017,"SI----2-005 FS","SI----2-005","","",112,145,112,145,26,33,26,33,11,,"CCGT D1_Integrated Programme Schedule;OEM (Engineering & Deliverables);WHOLE PLANT / GENERAL ACTIVITIES;MILESTONES;Key Dates / Contract Schedule 3A (Programme Requirements & Constraints)",1,0,0.0,0.0,0.0002034588,0,1.0,0.0000812387,0.0068493151,0.0,0.0,0.0,0.0006435006,0.0,1.0,0.0
1.5.11.11.3-7,SI1---3-10,"(3c) DELIVERY (ON-SITE) OF CAST-IN-PLACE EMBEDS FOR REMAINING PLANT",7112,"CCGTD1_IPS",TT_FinMile,"61415",-,-,-,100,TK_Complete,26/02/2018,26/01/2018,26/02/2018,26/01/2018,"SI----2-005 FS","SI----2-005","","",134,167,134,167,31,38,31,38,19,,"CCGT D1_Integrated Programme Schedule;OEM (Engineering & Deliverables);WHOLE PLANT / GENERAL ACTIVITIES;MILESTONES;Key Dates / Contract Schedule 3A (Programme Requirements & Constraints)",1,0,0.0,0.0,0.0002034588,0,1.0,0.0000812387,0.0068493151,0.0,0.0,0.0,0.0006435006,0.0,1.0,0.0
1.5.11.11.3-8,SI1---3-15,"(4a) DELIVERY (ON-SITE) OF UMC CRANE / PRELIMINARY O&M MANUAL AND HRSG STEEL / CASING",7112,"CCGTD1_IPS",TT_FinMile,"61415",-,-,-,100,TK_Complete,26/02/2018,01/01/2018,26/02/2018,01/01/2018,"SI----2-005 FS","SI----2-005","","",134,163,134,163,31,38,31,38,19,,"CCGT D1_Integrated Programme Schedule;OEM (Engineering & Deliverables);WHOLE PLANT / GENERAL ACTIVITIES;MILESTONES;Key Dates / Contract Schedule 3A (Programme Requirements & Constraints)",1,0,0.0,0.0,0.0002034588,0,1.0,0.0000812387,0.0068493151,0.0,0.0,0.0,0.0006435006,0.0,1.0,0.0
1.5.11.11.3-9,SI1---3-20,"(4b1) DELIVERY (ON-SITE) OF STEAM TURBINE AND GENERATOR",7112,"CCGTD1_IPS",TT_FinMile,"61415",-,-,-,100,TK_Complete,01/04/2018,01/04/2018,01/04/2018,01/04/2018,"SI----2-005 FS","SI----2-005","","",139,176,139,176,32,41,32,41,24,,"CCGT D1_Integrated Programme Schedule;OEM (Engineering & Deliverables);WHOLE PLANT / GENERAL ACTIVITIES;MILESTONES;Key Dates / Contract Schedule 3A (Programme Requirements & Constraints)",1,0,0.0,0.0,0.0002034588,0,1.0,0.0000812387,0.0068493151,0.0,0.0,0.0,0.0006435006,0.0,1.0,0.0
1.5.11.11.3-10,SI1---3-25,"(4c) DELIVERY (ON-SITE) OF GAS TURBINE AND CONDENSER",7112,"CCGTD1_IPS",TT_FinMile,"61415",-,-,-,100,TK_Complete,01/04/2018,01/04/2018,01/04/2018,01/04/2018,"SI----2-005 FS","SI----2-005","","",139,176,139,176,32,41,32,41,24,,"CCGT D1_Integrated Programme Schedule;OEM (Engineering & Deliverables);WHOLE PLANT / GENERAL ACTIVITIES;MILESTONES;Key Dates / Contract Schedule 3A (Programme Requirements & Constraints)",1,0,0.0,0.0,0.0002034588,0,1.0,0.0000812387,0.0068493151,0.0,0.0,0.0,0.0006435006,0.0,1.0,0.0
1.5.11.11.3-11,SI1---3-30,"(4d) DELIVERY (ON-SITE) OF HRSG PIPING AND BALANCE OF HRSG EQUIPMENT",7112,"CCGTD1_IPS",TT_FinMile,"61415",-,-,-,100,TK_Complete,30/07/2018,18/08/2018,30/07/2018,18/08/2018,"SI----2-005 FS","SI----2-005","","",156,196,156,196,36,45,36,45,33,,"CCGT D1_Integrated Programme Schedule;OEM (Engineering & Deliverables);WHOLE PLANT / GENERAL ACTIVITIES;MILESTONES;Key Dates / Contract Schedule 3A (Programme Requirements & Constraints)",1,0,0.0,0.0,0.0002034588,0,1.0,0.0000812387,0.0068493151,0.0,0.0,0.0,0.0006435006,0.0,1.0,0.0
1.5.11.11.3-12,SI1---2-25,"(5b) COMPLETION OF MOBILIZATION OF TFA FOR CIVIL WORKS",7112,"CCGTD1_IPS",TT_FinMile,"61415",-,-,-,100,TK_Complete,25/11/2017,30/10/2017,25/11/2017,30/10/2017,"SI----2-005 FS","SI----2-005","","",121,154,121,154,28,36,28,36,14,,"CCGT D1_Integrated Programme Schedule;OEM (Engineering & Deliverables);WHOLE PLANT / GENERAL ACTIVITIES;MILESTONES;Key Dates / Contract Schedule 3A (Programme Requirements & Constraints)",1,0,0.0,0.0,0.0002034588,0,1.0,0.0000812387,0.0068493151,0.0,0.0,0.0,0.0006435006,0.0,1.0,0.0
1.5.11.11.3-13,SI1---2-30,"(6a) COMPLETION OF NOMINATION OF TFA / COMMISSIONING PROCEDURE AND ETC.",7112,"CCGTD1_IPS",TT_FinMile,"61415",-,-,-,100,TK_Complete,11/08/2018,11/08/2018,11/08/2018,11/08/2018,"SI----2-005 FS","SI----2-005","","",158,195,158,195,36,45,36,45,34,,"CCGT D1_Integrated Programme Schedule;OEM (Engineering & Deliverables);WHOLE PLANT / GENERAL ACTIVITIES;MILESTONES;Key Dates / Contract Schedule 3A (Programme Requirements & Constraints)",1,0,0.0,0.0,0.0002034588,0,1.0,0.0000812387,0.0068493151,0.0,0.0,0.0,0.0006435006,0.0,1.0,0.0
1.5.11.11.3-14,SI1---2-35,"(6b) COMPLETION AND SIGN OFF OF ALL CHECK SHEET TO ALLOW 1ST FIRE",7112,"CCGTD1_IPS",TT_FinMile,"61415",-,-,-,100,TK_Complete,16/03/2019,23/01/2020,16/03/2019,23/01/2020,"SI----2-005 FS","SI----2-005","SI1---3-53 FF,SI1---2-40 FF","SI1---3-53,SI1---2-40",189,270,189,270,44,63,44,63,48,,"CCGT D1_Integrated Programme Schedule;OEM (Engineering & Deliverables);WHOLE PLANT / GENERAL ACTIVITIES;MILESTONES;Key Dates / Contract Schedule 3A (Programme Requirements & Constraints)",1,2,0.0000001656,0.0008138352,0.0002034588,0,1.0,0.0000812387,0.0068493151,0.0061538462,0.00025,0.0020887728,0.0006435006,0.0,1.0,0.0
1.5.11.11.3-15,SI1---3-35,"(4e) DELIVERY (ON-SITE) OF BALANCE OF ALL SIEMENS SUPPLIED EQUIPMENT",7112,"CCGTD1_IPS",TT_FinMile,"61415",-,-,-,100,TK_Complete,01/12/2018,01/12/2018,01/12/2018,01/12/2018,"SI----2-005 FS","SI----2-005","S1000 FF","S1000",174,211,174,211,40,49,40,49,41,,"CCGT D1_Integrated Programme Schedule;OEM (Engineering & Deliverables);WHOLE PLANT / GENERAL ACTIVITIES;MILESTONES;Key Dates / Contract Schedule 3A (Programme Requirements & Constraints)",1,0,0.0,0.0,0.0002034588,0,1.0,0.0000812387,0.0068493151,0.0,0.0,0.0,0.0006435006,0.0,1.0,0.0
1.5.11.11.3-16,SI1---3-37,"(4b2) DELIVERY (ON-SITE) OF HRSG MODULES / DRUMS",7112,"CCGTD1_IPS",TT_FinMile,"61415",-,-,-,100,TK_Complete,21/04/2018,08/04/2018,21/04/2018,08/04/2018,"SI----2-005 FS","SI----2-005","","",142,177,142,177,33,41,33,41,24,,"CCGT D1_Integrated Programme Schedule;OEM (Engineering & Deliverables);WHOLE PLANT / GENERAL ACTIVITIES;MILESTONES;Key Dates / Contract Schedule 3A (Programme Requirements & Constraints)",1,0,0.0,0.0,0.0002034588,0,1.0,0.0000812387,0.0068493151,0.0,0.0,0.0,0.0006435006,0.0,1.0,0.0
1.5.11.11.3-17,SI1---2-20,"(5a) COMPLETION OF INSURANCE CERTIFICATE / NOMINATION OF TFA ETC.",7112,"CCGTD1_IPS",TT_FinMile,"61415",-,-,-,100,TK_Complete,31/05/2017,03/05/2017,31/05/2017,03/05/2017,"SI----2-005 FS","SI----2-005","","",96,128,96,128,22,30,22,30,6,,"CCGT D1_Integrated Programme Schedule;OEM (Engineering & Deliverables);WHOLE PLANT / GENERAL ACTIVITIES;MILESTONES;Key Dates / Contract Schedule 3A (Programme Requirements & Constraints)",1,0,0.0,0.0,0.0002034588,0,1.0,0.0000812387,0.0068493151,0.0,0.0,0.0,0.0006435006,0.0,1.0,0.0
1.5.11.11.4,61414,"Key Dates / Interface Events with Client",7112,"CCGTD1_IPS",WBS,"61413",,,,100,Complete,03/11/2016,03/11/2016,14/01/2017,19/12/2016,,,,,66,102,76,109,15,24,17,25,,,"CCGT D1_Integrated Programme Schedule;OEM (Engineering & Deliverables);WHOLE PLANT / GENERAL ACTIVITIES;MILESTONES"
1.5.11.11.4-1,SI-3412-32,"GENERAL LAYOUT ACCEPTED FROM CLIENT (AS BASIS OF CONTRACT SIGNING)",7112,"CCGTD1_IPS",TT_Mile,"61414",-,-,-,100,TK_Complete,03/11/2016,03/11/2016,03/11/2016,03/11/2016,"","","","",66,102,66,102,15,24,15,24,0,,"CCGT D1_Integrated Programme Schedule;OEM (Engineering & Deliverables);WHOLE PLANT / GENERAL ACTIVITIES;MILESTONES;Key Dates / Interface Events with Client",0,0,0.0,0.0,0.0,0,1.0,0.0000812387,0.0,0.0,0.0,0.0,0.0,0.0,1.0,0.0
1.5.11.11.4-2,SI-U--5-015,"PILE CHARACTERISTICS AND PILE LOAD CAPACITY RELEASED BY CLP",7112,"CCGTD1_IPS",TT_Mile,"61414",-,-,-,100,TK_Complete,03/11/2016,03/11/2016,03/11/2016,03/11/2016,"","","","",66,102,66,102,15,24,15,24,0,,"CCGT D1_Integrated Programme Schedule;OEM (Engineering & Deliverables);WHOLE PLANT / GENERAL ACTIVITIES;MILESTONES;Key Dates / Interface Events with Client",0,0,0.0,0.0,0.0,0,1.0,0.0000812387,0.0,0.0,0.0,0.0,0.0,0.0,1.0,0.0
1.5.11.11.4-3,SI----2-005,"PRE-NOTICE TO PROCEED (PNTP)",7112,"CCGTD1_IPS",TT_Mile,"61414",-,-,-,100,TK_Complete,03/11/2016,03/11/2016,03/11/2016,03/11/2016,"","","SI1---3-51 FS,SI1---3-15 FS,SI1---2-15 FS,SI1---3-49 FS,SI1---3-39 FS,SI1---2-35 FS,SI1---3-00 FS,SI1---2-30 FS,SI1---3-30 FS,SI1---3-47 FS,SI1---3-10 FS,SI1---2-25 FS,SI1---3-37 FS,SI1---3-43 FS,SI1---3-20 FS,SI1---3-35 FS,SI1---3-05 FS,SI1---2-20 FS,SI1---3-25 FS","SI1---3-51,SI1---3-15,SI1---2-15,SI1---3-49,SI1---3-39,SI1---2-35,SI1---3-00,SI1---2-30,SI1---3-30,SI1---3-47,SI1---3-10,SI1---2-25,SI1---3-37,SI1---3-43,SI1---3-20,SI1---3-35,SI1---3-05,SI1---2-20,SI1---3-25",66,102,66,102,15,24,15,24,0,,"CCGT D1_Integrated Programme Schedule;OEM (Engineering & Deliverables);WHOLE PLANT / GENERAL ACTIVITIES;MILESTONES;Key Dates / Interface Events with Client",0,19,0.0,0.0046795524,0.0,0,1.0,0.0000812387,0.0,0.0584615385,0.0,0.0120104439,0.0,0.0,1.0,0.0
1.5.11.11.4-4,SI----2C00,"START ENGINEERING",7112,"CCGTD1_IPS",TT_Mile,"61414",-,-,-,100,TK_Complete,26/11/2016,03/11/2016,26/11/2016,03/11/2016,"","","SI1MAL2O79 FS,SI1LCB2B60 FS,SI1PAH2-60 FS,SI1LAC2B14 SS,SI---P2J75 FS,SI1UMC2P60 FS,SI0UBH2-60 FS,SI-3512E40 FS,SI-MAV2-01 FS,SI1SMM2-75 FS,SI1PBB2B90 FS,SI1LCB2B75 FS,SI-P--2-35 FS,SI1LCA2B75 FS,SI-C--2-15 FS,SI1UMY2-60 FS,SI1PBB2B110 FS,SI1PDB2-65 FS,SI1UMC2O60 FS,SI-C--2C50 FS,SI-G--2-35 FS,SI1LAC2B60 FS,SI1LCA2B60 FS,SI1UMC2O77 FS,SI1UPY2B77 FS,SI-3512-40 FS,SI1LAC2B75 FS,SI1PGB2B75 FS,SI1SMM2-60 FS,SI1PDB2-60 FS,SI1LCB2B14 SS,SI1PCB2B60 FS,SI1PGB2D75 FS,SI1PGB2D60 FS,SI1PGB2B60 FS,SI1PGB2C75 FS,SI1PGB2C60 FS,SI0XKA2-15 FS,SI-3022-39 FS,SI1PDB2A60 FS,SI-B--2A50 FS,SI1LCA2B14 SS,SI1PCB2B75 FS","SI1MAL2O79,SI1LCB2B60,SI1PAH2-60,SI1LAC2B14,SI---P2J75,SI1UMC2P60,SI0UBH2-60,SI-3512E40,SI-MAV2-01,SI1SMM2-75,SI1PBB2B90,SI1LCB2B75,SI-P--2-35,SI1LCA2B75,SI-C--2-15,SI1UMY2-60,SI1PBB2B110,SI1PDB2-65,SI1UMC2O60,SI-C--2C50,SI-G--2-35,SI1LAC2B60,SI1LCA2B60,SI1UMC2O77,SI1UPY2B77,SI-3512-40,SI1LAC2B75,SI1PGB2B75,SI1SMM2-60,SI1PDB2-60,SI1LCB2B14,SI1PCB2B60,SI1PGB2D75,SI1PGB2D60,SI1PGB2B60,SI1PGB2C75,SI1PGB2C60,SI0XKA2-15,SI-3022-39,SI1PDB2A60,SI-B--2A50,SI1LCA2B14,SI1PCB2B75",69,102,69,102,16,24,16,24,1,,"CCGT D1_Integrated Programme Schedule;OEM (Engineering & Deliverables);WHOLE PLANT / GENERAL ACTIVITIES;MILESTONES;Key Dates / Interface Events with Client",0,43,0.0,0.0449643947,0.0,0,1.0,0.0000812387,0.0,0.1323076923,0.0,0.1154046997,0.0,0.0,1.0,0.0
1.5.11.11.4-5,SI----2D00,"START PRODUCTS (GT, ST, GENERATOR, CONDENSER)",7112,"CCGTD1_IPS",TT_Mile,"61414",-,-,-,100,TK_Complete,03/11/2016,03/11/2016,03/11/2016,03/11/2016,"","","SP1MB-3-25 FS,SI-L--2-25 FS,SI-MB-2-20 FS,SP1MB-2G75 FS,SI-M--2D20 FS,SI-M--2C20 FS,SP1MKA2-85 FS","SP1MB-3-25,SI-L--2-25,SI-MB-2-20,SP1MB-2G75,SI-M--2D20,SI-M--2C20,SP1MKA2-85",66,102,66,102,15,24,15,24,0,,"CCGT D1_Integrated Programme Schedule;OEM (Engineering & Deliverables);WHOLE PLANT / GENERAL ACTIVITIES;MILESTONES;Key Dates / Interface Events with Client",0,7,0.0,0.0166836216,0.0,0,1.0,0.0000812387,0.0,0.0215384615,0.0,0.0428198433,0.0,0.0,1.0,0.0
1.5.11.11.4-6,SI----2-007,"NOTICE TO PROCEED (NTP)",7112,"CCGTD1_IPS",TT_Mile,"61414",-,-,-,100,TK_Complete,14/01/2017,19/12/2016,14/01/2017,19/12/2016,"","","SI-HA-2-87& SS,SI1HA-2-87 FS","SI-HA-2-87&,SI1HA-2-87",76,109,76,109,17,25,17,25,1,,"CCGT D1_Integrated Programme Schedule;OEM (Engineering & Deliverables);WHOLE PLANT / GENERAL ACTIVITIES;MILESTONES;Key Dates / Interface Events with Client",0,2,0.0,0.0004069176,0.0,0,1.0,0.0000812387,0.0,0.0061538462,0.0,0.0010443864,0.0,0.0,1.0,0.0
1.6,58233,"PMT - Project Management Team",7112,"CCGTD1_IPS",WBS,"58232",,,,100,Complete,09/09/2020,14/11/2014,29/06/2021,31/05/2021,,,,,267,0,308,341,62,0,72,79,,,"CCGT D1_Integrated Programme Schedule"
1.6.1,62090,"Project Execution Key Dates & Summary Schedule",7112,"CCGTD1_IPS",WBS,"58233",,,,100,Complete,01/06/2021,15/12/2016,03/06/2021,31/05/2021,,,,,304,108,305,341,71,25,71,79,,,"CCGT D1_Integrated Programme Schedule;PMT - Project Management Team"
1.6.1-1,S1030,"Turbine Hall Over Head Crane Ready",7112,"CCGTD1_IPS",TT_FinMile,"62090",-,-,-,100,TK_Complete,01/06/2021,31/08/2018,01/06/2021,31/08/2018,"KD_C04XX FF","KD_C04XX","","",304,198,304,198,71,46,71,46,98,,"CCGT D1_Integrated Programme Schedule;PMT - Project Management Team;Project Execution Key Dates & Summary Schedule",1,0,0.0,0.0,0.0002034588,0,1.0,0.0000812387,0.0068493151,0.0,0.0,0.0,0.0006435006,0.0,1.0,0.0
1.6.1-2,S1080,"Start Chemical Clean",7112,"CCGTD1_IPS",TT_Mile,"62090",-,-,-,100,TK_Complete,01/06/2021,14/12/2019,01/06/2021,14/12/2019,"HCOM1140 SS","HCOM1140","A4170 SS","A4170",304,265,304,265,71,61,71,61,98,,"CCGT D1_Integrated Programme Schedule;PMT - Project Management Team;Project Execution Key Dates & Summary Schedule",1,1,0.0000004968,0.0002034588,0.0024415056,0,1.0,0.0000812387,0.0068493151,0.0030769231,0.00075,0.0005221932,0.0077220077,0.0,1.0,0.0
1.6.1-3,S1070,"Start first Hydro Test",7112,"CCGTD1_IPS",TT_Mile,"62090",-,-,-,100,TK_Complete,01/06/2021,13/05/2019,01/06/2021,13/05/2019,"00GHC-01-60 SS","00GHC-01-60","","",304,234,304,234,71,54,71,54,98,,"CCGT D1_Integrated Programme Schedule;PMT - Project Management Team;Project Execution Key Dates & Summary Schedule",1,0,0.0,0.0,0.0016276704,0,1.0,0.0000812387,0.0068493151,0.0,0.0,0.0,0.0051480051,0.0,1.0,0.0
1.6.1-4,S1095,"400KV Commencement",7112,"CCGTD1_IPS",TT_Mile,"62090",-,-,-,100,TK_Complete,01/06/2021,17/07/2017,01/06/2021,17/07/2017,"","","S1100 SS","S1100",304,139,304,139,71,32,71,32,98,,"CCGT D1_Integrated Programme Schedule;PMT - Project Management Team;Project Execution Key Dates & Summary Schedule",0,0,0.0,0.0,0.0,0,1.0,0.0000812387,0.0,0.0,0.0,0.0,0.0,0.0,1.0,0.0
1.6.1-5,S1110,"Back Energisation",7112,"CCGTD1_IPS",TT_FinMile,"62090",-,-,-,100,TK_Complete,01/06/2021,01/12/2019,01/06/2021,01/12/2019,"A4060 FS","A4060","","",304,263,304,263,71,61,71,61,98,,"CCGT D1_Integrated Programme Schedule;PMT - Project Management Team;Project Execution Key Dates & Summary Schedule",1,0,0.0,0.0,0.02034588,0,1.0,0.0000812387,0.0068493151,0.0,0.0,0.0,0.0643500644,0.0,1.0,0.0
1.6.1-6,S1130,"First Fire",7112,"CCGTD1_IPS",TT_Mile,"62090",-,-,-,100,TK_Complete,02/06/2021,24/01/2020,02/06/2021,24/01/2020,"HCOM1290 FS","HCOM1290","A4180 SS,A4190 SS","A4180,A4190",305,271,305,271,71,63,71,63,98,,"CCGT D1_Integrated Programme Schedule;PMT - Project Management Team;Project Execution Key Dates & Summary Schedule",1,2,0.0000024842,0.0004069176,0.006103764,0,1.0,0.0000812387,0.0068493151,0.0061538462,0.00375,0.0010443864,0.0193050193,0.0,1.0,0.0
1.6.2,60072,"Owner's Deliverables",7112,"CCGTD1_IPS",WBS,"58233",,,,100,Complete,01/06/2021,03/11/2016,29/06/2021,17/06/2020,,,,,304,102,308,291,71,24,72,68,,,"CCGT D1_Integrated Programme Schedule;PMT - Project Management Team"
1.6.2-1,A4010,"Access to Site",7112,"CCGTD1_IPS",TT_Mile,"60072",-,-,-,100,TK_Complete,28/06/2021,03/11/2016,28/06/2021,03/11/2016,"","","","",308,102,308,102,72,24,72,24,99,,"CCGT D1_Integrated Programme Schedule;PMT - Project Management Team;Owner's Deliverables",0,0,0.0,0.0,0.0,0,1.0,0.0000812387,0.0,0.0,0.0,0.0,0.0,0.0,1.0,0.0
1.6.2-2,A4020,"Pile Characteristics and Pile Load capacity supplien to OEM",7112,"CCGTD1_IPS",TT_Mile,"60072",-,-,-,100,TK_Complete,28/06/2021,03/11/2016,28/06/2021,03/11/2016,"","","","",308,102,308,102,72,24,72,24,99,,"CCGT D1_Integrated Programme Schedule;PMT - Project Management Team;Owner's Deliverables",0,0,0.0,0.0,0.0,0,1.0,0.0000812387,0.0,0.0,0.0,0.0,0.0,0.0,1.0,0.0
1.6.2-3,A4030,"Raw Water Available",7112,"CCGTD1_IPS",TT_Mile,"60072",-,-,-,100,TK_Complete,28/06/2021,26/07/2019,28/06/2021,26/07/2019,"","","","",308,245,308,245,72,57,72,57,99,,"CCGT D1_Integrated Programme Schedule;PMT - Project Management Team;Owner's Deliverables",0,0,0.0,0.0,0.0,0,1.0,0.0000812387,0.0,0.0,0.0,0.0,0.0,0.0,1.0,0.0
1.6.2-4,A4040,"Demineralized water available (For Construction)",7112,"CCGTD1_IPS",TT_Mile,"60072",-,-,-,100,TK_Complete,28/06/2021,19/05/2019,28/06/2021,19/05/2019,"","","","",308,235,308,235,72,54,72,54,99,,"CCGT D1_Integrated Programme Schedule;PMT - Project Management Team;Owner's Deliverables",0,0,0.0,0.0,0.0,0,1.0,0.0000812387,0.0,0.0,0.0,0.0,0.0,0.0,1.0,0.0
1.6.2-5,A4050,"HV Grid Available",7112,"CCGTD1_IPS",TT_Mile,"60072",-,-,-,100,TK_Complete,29/06/2021,08/01/2020,29/06/2021,08/01/2020,"","","","",308,268,308,268,72,62,72,62,99,,"CCGT D1_Integrated Programme Schedule;PMT - Project Management Team;Owner's Deliverables",0,0,0.0,0.0,0.0,0,1.0,0.0000812387,0.0,0.0,0.0,0.0,0.0,0.0,1.0,0.0
1.6.2-6,A4060,"MV Available (Back Energizing)",7112,"CCGTD1_IPS",TT_FinMile,"60072",-,-,-,100,TK_Complete,01/06/2021,01/12/2019,01/06/2021,01/12/2019,"A4280 FF","A4280","S1100 FF,S1110 FS","S1100,S1110",304,263,304,263,71,61,71,61,97,,"CCGT D1_Integrated Programme Schedule;PMT - Project Management Team;Owner's Deliverables",1,1,0.000004099,0.0002034588,0.0201424212,0,1.0,0.0000812387,0.0068493151,0.0030769231,0.0061875,0.0005221932,0.0637065637,0.0,1.0,0.0
1.6.2-7,A4070,"Fuel Gas Required",7112,"CCGTD1_IPS",TT_Mile,"60072",-,-,-,100,TK_Complete,29/06/2021,08/01/2020,29/06/2021,08/01/2020,"","","","",308,268,308,268,72,62,72,62,99,,"CCGT D1_Integrated Programme Schedule;PMT - Project Management Team;Owner's Deliverables",0,0,0.0,0.0,0.0,0,1.0,0.0000812387,0.0,0.0,0.0,0.0,0.0,0.0,1.0,0.0
1.6.2-8,A4080,"Fuel Oil Required",7112,"CCGTD1_IPS",TT_Mile,"60072",-,-,-,100,TK_Complete,28/06/2021,17/06/2020,28/06/2021,17/06/2020,"","","","",308,291,308,291,72,68,72,68,99,,"CCGT D1_Integrated Programme Schedule;PMT - Project Management Team;Owner's Deliverables",0,0,0.0,0.0,0.0,0,1.0,0.0000812387,0.0,0.0,0.0,0.0,0.0,0.0,1.0,0.0
1.6.3,60071,"Key Project Milestone",7112,"CCGTD1_IPS",WBS,"58233",,,,100,Complete,01/06/2021,07/06/2016,28/06/2021,31/05/2021,,,,,304,81,308,341,71,19,72,79,,,"CCGT D1_Integrated Programme Schedule;PMT - Project Management Team"
1.6.3-1,A3910,"EIA Approved by HK GOVERNMNENT",7112,"CCGTD1_IPS",TT_Mile,"60071",-,-,-,100,TK_Complete,28/06/2021,07/06/2016,28/06/2021,07/06/2016,"","","","",308,81,308,81,72,19,72,19,98,,"CCGT D1_Integrated Programme Schedule;PMT - Project Management Team;Key Project Milestone",0,0,0.0,0.0,0.0,0,1.0,0.0000812387,0.0,0.0,0.0,0.0,0.0,0.0,1.0,0.0
1.6.3-2,A3920,"ENVIRONMENTAL PERMIT ISSUED",7112,"CCGTD1_IPS",TT_Mile,"60071",-,-,-,100,TK_Complete,28/06/2021,14/06/2016,28/06/2021,14/06/2016,"","","","",308,82,308,82,72,19,72,19,98,,"CCGT D1_Integrated Programme Schedule;PMT - Project Management Team;Key Project Milestone",0,0,0.0,0.0,0.0,0,1.0,0.0000812387,0.0,0.0,0.0,0.0,0.0,0.0,1.0,0.0
1.6.3-3,A3930,"PNTP TO OEM (START ENGINEERING)",7112,"CCGTD1_IPS",TT_Mile,"60071",-,-,-,100,TK_Complete,28/06/2021,03/11/2016,28/06/2021,03/11/2016,"","","","",308,102,308,102,72,24,72,24,98,,"CCGT D1_Integrated Programme Schedule;PMT - Project Management Team;Key Project Milestone",0,0,0.0,0.0,0.0,0,1.0,0.0000812387,0.0,0.0,0.0,0.0,0.0,0.0,1.0,0.0
1.6.3-4,A3940,"PNTP TO ADVANCED WORKS CONTRACTOR FOR TRIAL PILES",7112,"CCGTD1_IPS",TT_Mile,"60071",-,-,-,100,TK_Complete,28/06/2021,07/11/2016,28/06/2021,07/11/2016,"","","","",308,103,308,103,72,24,72,24,98,,"CCGT D1_Integrated Programme Schedule;PMT - Project Management Team;Key Project Milestone",0,0,0.0,0.0,0.0,0,1.0,0.0000812387,0.0,0.0,0.0,0.0,0.0,0.0,1.0,0.0
1.6.3-5,A3950,"HONG KONG GOVERNMENT APPROVAL / NTP",7112,"CCGTD1_IPS",TT_Mile,"60071",-,-,-,100,TK_Complete,28/06/2021,13/12/2016,28/06/2021,13/12/2016,"","","","",308,108,308,108,72,25,72,25,98,,"CCGT D1_Integrated Programme Schedule;PMT - Project Management Team;Key Project Milestone",0,0,0.0,0.0,0.0,0,1.0,0.0000812387,0.0,0.0,0.0,0.0,0.0,0.0,1.0,0.0
1.6.3-6,A3960,"ADVANCED WORKS CONTRACT AWARD",7112,"CCGTD1_IPS",TT_Mile,"60071",-,-,-,100,TK_Complete,28/06/2021,15/12/2016,28/06/2021,15/12/2016,"","","S1010 SS","S1010",308,108,308,108,72,25,72,25,98,,"CCGT D1_Integrated Programme Schedule;PMT - Project Management Team;Key Project Milestone",0,0,0.0,0.0,0.0,0,1.0,0.0000812387,0.0,0.0,0.0,0.0,0.0,0.0,1.0,0.0
1.6.3-7,A3970,"OEM CONTRACT AWARD / BOP CONTRACT AWARD",7112,"CCGTD1_IPS",TT_Mile,"60071",-,-,-,100,TK_Complete,28/06/2021,19/12/2016,28/06/2021,19/12/2016,"","","S1000 SS","S1000",308,109,308,109,72,25,72,25,98,,"CCGT D1_Integrated Programme Schedule;PMT - Project Management Team;Key Project Milestone",0,0,0.0,0.0,0.0,0,1.0,0.0000812387,0.0,0.0,0.0,0.0,0.0,0.0,1.0,0.0
1.6.3-8,A3980,"MAIN CIVIL WORKS CONTRACT AWARD",7112,"CCGTD1_IPS",TT_Mile,"60071",-,-,-,100,TK_Complete,28/06/2021,29/05/2017,28/06/2021,29/05/2017,"","","","",308,132,308,132,72,30,72,30,98,,"CCGT D1_Integrated Programme Schedule;PMT - Project Management Team;Key Project Milestone",0,0,0.0,0.0,0.0,0,1.0,0.0000812387,0.0,0.0,0.0,0.0,0.0,0.0,1.0,0.0
1.6.3-9,A3990,"SITE ESTABLISHMENT CONTRACT AWARD",7112,"CCGTD1_IPS",TT_Mile,"60071",-,-,-,100,TK_Complete,28/06/2021,05/06/2017,28/06/2021,05/06/2017,"","","","",308,133,308,133,72,31,72,31,98,,"CCGT D1_Integrated Programme Schedule;PMT - Project Management Team;Key Project Milestone",0,0,0.0,0.0,0.0,0,1.0,0.0000812387,0.0,0.0,0.0,0.0,0.0,0.0,1.0,0.0
1.6.3-10,A4000,"E&M INSTALLATION CONTRACT AWARD",7112,"CCGTD1_IPS",TT_Mile,"60071",-,-,-,100,TK_Complete,28/06/2021,22/09/2017,28/06/2021,22/09/2017,"","","","",308,149,308,149,72,34,72,34,99,,"CCGT D1_Integrated Programme Schedule;PMT - Project Management Team;Key Project Milestone",0,0,0.0,0.0,0.0,0,1.0,0.0000812387,0.0,0.0,0.0,0.0,0.0,0.0,1.0,0.0
1.6.3-11,A4130,"START OF MAIN CIVIL WORKS ON SITE",7112,"CCGTD1_IPS",TT_Mile,"60071",-,-,-,100,TK_Complete,01/06/2021,19/06/2017,01/06/2021,19/06/2017,"ESTAB040 FS","ESTAB040","","",304,135,304,135,71,31,71,31,98,,"CCGT D1_Integrated Programme Schedule;PMT - Project Management Team;Key Project Milestone",1,0,0.0,0.0,0.0006103764,0,1.0,0.0000812387,0.0068493151,0.0,0.0,0.0,0.0019305019,0.0,1.0,0.0
1.6.3-12,A4140,"START OF E&M WORKS ON SITE",7112,"CCGTD1_IPS",TT_Mile,"60071",-,-,-,100,TK_Complete,01/06/2021,19/02/2018,01/06/2021,19/02/2018,"SUB-HRSG-160 SS","SUB-HRSG-160","","",304,170,304,170,71,39,71,39,98,,"CCGT D1_Integrated Programme Schedule;PMT - Project Management Team;Key Project Milestone",1,0,0.0,0.0,0.0032553408,0,1.0,0.0000812387,0.0068493151,0.0,0.0,0.0,0.0102960103,0.0,1.0,0.0
1.6.3-13,A4150,"START OF COLD COMMISSIONING",7112,"CCGTD1_IPS",TT_Mile,"60071",-,-,-,100,TK_Complete,01/06/2021,29/07/2019,01/06/2021,29/07/2019,"CCOM1060 FS","CCOM1060","","",304,245,304,245,71,57,71,57,98,,"CCGT D1_Integrated Programme Schedule;PMT - Project Management Team;Key Project Milestone",1,0,0.0,0.0,0.0079348932,0,1.0,0.0000812387,0.0068493151,0.0,0.0,0.0,0.0250965251,0.0,1.0,0.0
1.6.3-14,A4160,"Back Energisation",7112,"CCGTD1_IPS",TT_Mile,"60071",-,-,-,100,TK_Complete,01/06/2021,01/12/2019,01/06/2021,01/12/2019,"","","","",304,263,304,263,71,61,71,61,98,,"CCGT D1_Integrated Programme Schedule;PMT - Project Management Team;Key Project Milestone",0,0,0.0,0.0,0.0,0,1.0,0.0000812387,0.0,0.0,0.0,0.0,0.0,0.0,1.0,0.0
1.6.3-15,A4170,"START CHEMICAL CLEANING",7112,"CCGTD1_IPS",TT_Mile,"60071",-,-,-,100,TK_Complete,01/06/2021,14/12/2019,01/06/2021,14/12/2019,"S1080 SS","S1080","","",304,265,304,265,71,61,71,61,98,,"CCGT D1_Integrated Programme Schedule;PMT - Project Management Team;Key Project Milestone",1,0,0.0,0.0,0.0026449644,0,1.0,0.0000812387,0.0068493151,0.0,0.0,0.0,0.0083655084,0.0,1.0,0.0
1.6.3-16,A4180,"FIRST FIRE",7112,"CCGTD1_IPS",TT_Mile,"60071",-,-,-,100,TK_Complete,01/06/2021,24/01/2020,01/06/2021,24/01/2020,"S1130 SS","S1130","","",304,271,304,271,71,63,71,63,98,,"CCGT D1_Integrated Programme Schedule;PMT - Project Management Team;Key Project Milestone",1,0,0.0,0.0,0.0063072228,0,1.0,0.0000812387,0.0068493151,0.0,0.0,0.0,0.0199485199,0.0,1.0,0.0
1.6.3-17,A4190,"START HOT COMMISSIONING (PART 1 - GAS)",7112,"CCGTD1_IPS",TT_Mile,"60071",-,-,-,100,TK_Complete,01/06/2021,24/01/2020,01/06/2021,24/01/2020,"S1130 SS","S1130","","",304,271,304,271,71,63,71,63,98,,"CCGT D1_Integrated Programme Schedule;PMT - Project Management Team;Key Project Milestone",1,0,0.0,0.0,0.0063072228,0,1.0,0.0000812387,0.0068493151,0.0,0.0,0.0,0.0199485199,0.0,1.0,0.0
1.6.3-18,A4200,"STEAM BLOW",7112,"CCGTD1_IPS",TT_Mile,"60071",-,-,-,100,TK_Complete,01/06/2021,28/01/2020,01/06/2021,28/01/2020,"HCOM1330 SS","HCOM1330","","",304,271,304,271,71,63,71,63,98,,"CCGT D1_Integrated Programme Schedule;PMT - Project Management Team;Key Project Milestone",1,0,0.0,0.0,0.0069175992,0,1.0,0.0000812387,0.0068493151,0.0,0.0,0.0,0.0218790219,0.0,1.0,0.0
1.6.3-19,A4210,"UNIT UNDER OPERATIONAL CONTROL",7112,"CCGTD1_IPS",TT_Mile,"60071",-,-,-,100,TK_Complete,01/06/2021,28/09/2020,01/06/2021,28/09/2020,"A3900 SS","A3900","","",304,306,304,306,71,71,71,71,98,,"CCGT D1_Integrated Programme Schedule;PMT - Project Management Team;Key Project Milestone",1,0,0.0,0.0,0.0221770092,0,1.0,0.0000812387,0.0068493151,0.0,0.0,0.0,0.0701415701,0.0,1.0,0.0
1.6.3-20,A4220,"PART 1 COMMISSIONING CLEARANCE CERTIFICATE (CCC) ISSUED: UNIT UNDER OPERATION)",7112,"CCGTD1_IPS",TT_Mile,"60071",-,-,-,100,TK_Complete,01/06/2021,28/09/2020,01/06/2021,28/09/2020,"","","","",304,306,304,306,71,71,71,71,98,,"CCGT D1_Integrated Programme Schedule;PMT - Project Management Team;Key Project Milestone",0,0,0.0,0.0,0.0,0,1.0,0.0000812387,0.0,0.0,0.0,0.0,0.0,0.0,1.0,0.0
1.6.3-21,A4230,"D1 OP PERMIT",7112,"CCGTD1_IPS",TT_Mile,"60071",-,-,-,100,TK_Complete,01/06/2021,29/09/2020,01/06/2021,29/09/2020,"","","","",304,306,304,306,71,71,71,71,98,,"CCGT D1_Integrated Programme Schedule;PMT - Project Management Team;Key Project Milestone",0,0,0.0,0.0,0.0,0,1.0,0.0000812387,0.0,0.0,0.0,0.0,0.0,0.0,1.0,0.0
1.6.3-22,A4240,"START OF TB2 OUTAGE RECTIFICATION WORKS (SIEMENS)",7112,"CCGTD1_IPS",TT_Mile,"60071",-,-,-,100,TK_Complete,01/06/2021,22/02/2021,01/06/2021,22/02/2021,"A3530 SS","A3530","","",304,327,304,327,71,76,71,76,98,,"CCGT D1_Integrated Programme Schedule;PMT - Project Management Team;Key Project Milestone",1,0,0.0,0.0,0.0004069176,0,1.0,0.0000812387,0.0068493151,0.0,0.0,0.0,0.0012870013,0.0,1.0,0.0
1.6.3-23,A4250,"START HOT COMMISSIONING (PART 2 - OIL)",7112,"CCGTD1_IPS",TT_Mile,"60071",-,-,-,100,TK_Complete,01/06/2021,23/03/2021,01/06/2021,23/03/2021,"A3550 SS","A3550","","",304,331,304,331,71,77,71,77,98,,"CCGT D1_Integrated Programme Schedule;PMT - Project Management Team;Key Project Milestone",1,0,0.0,0.0,0.0008138352,0,1.0,0.0000812387,0.0068493151,0.0,0.0,0.0,0.0025740026,0.0,1.0,0.0
1.6.3-24,A4260,"COMPLETION OF ALL COMMISSIONING WORKS & HANDOVER to OPERATIONS",7112,"CCGTD1_IPS",TT_FinMile,"60071",-,-,-,100,TK_Complete,01/06/2021,31/05/2021,01/06/2021,31/05/2021,"A3890 FF","A3890","","",304,341,304,341,71,79,71,79,98,,"CCGT D1_Integrated Programme Schedule;PMT - Project Management Team;Key Project Milestone",1,0,0.0,0.0,0.0077314344,0,1.0,0.0000812387,0.0068493151,0.0,0.0,0.0,0.0244530245,0.0,1.0,0.0
1.6.4,58801,"PGMS",7112,"CCGTD1_IPS",WBS,"58233",,,,100,Complete,09/09/2020,14/11/2014,09/09/2020,31/05/2021,,,,,267,0,267,341,62,0,62,79,,,"CCGT D1_Integrated Programme Schedule;PMT - Project Management Team"
1.6.4-1,A3400,"CP 1 Conceptual Study",7112,"CCGTD1_IPS",TT_FinMile,"58801",-,-,-,100,TK_Complete,09/09/2020,14/11/2014,09/09/2020,14/11/2014,"","","","",267,0,267,0,62,0,62,0,96,,"CCGT D1_Integrated Programme Schedule;PMT - Project Management Team;PGMS",0,0,0.0,0.0,0.0,0,1.0,0.0000812387,0.0,0.0,0.0,0.0,0.0,0.0,1.0,0.0
1.6.4-2,A3410,"Advance Notice Guide",7112,"CCGTD1_IPS",TT_FinMile,"58801",-,-,-,100,TK_Complete,09/09/2020,01/04/2015,09/09/2020,01/04/2015,"","","","",267,19,267,19,62,4,62,4,96,,"CCGT D1_Integrated Programme Schedule;PMT - Project Management Team;PGMS",0,0,0.0,0.0,0.0,0,1.0,0.0000812387,0.0,0.0,0.0,0.0,0.0,0.0,1.0,0.0
1.6.4-3,A3420,"CP2 Project Basis",7112,"CCGTD1_IPS",TT_FinMile,"58801",-,-,-,100,TK_Complete,09/09/2020,21/07/2016,09/09/2020,21/07/2016,"","","","",267,87,267,87,62,20,62,20,96,,"CCGT D1_Integrated Programme Schedule;PMT - Project Management Team;PGMS",0,0,0.0,0.0,0.0,0,1.0,0.0000812387,0.0,0.0,0.0,0.0,0.0,0.0,1.0,0.0
1.6.4-4,A3430,"CP3 Project Strategy",7112,"CCGTD1_IPS",TT_FinMile,"58801",-,-,-,100,TK_Complete,09/09/2020,21/07/2016,09/09/2020,21/07/2016,"","","","",267,87,267,87,62,20,62,20,96,,"CCGT D1_Integrated Programme Schedule;PMT - Project Management Team;PGMS",0,0,0.0,0.0,0.0,0,1.0,0.0000812387,0.0,0.0,0.0,0.0,0.0,0.0,1.0,0.0
1.6.4-5,A3440,"Final Investment Decision Guide",7112,"CCGTD1_IPS",TT_FinMile,"58801",-,-,-,100,TK_Complete,09/09/2020,27/07/2016,09/09/2020,27/07/2016,"","","","",267,88,267,88,62,20,62,20,96,,"CCGT D1_Integrated Programme Schedule;PMT - Project Management Team;PGMS",0,0,0.0,0.0,0.0,0,1.0,0.0000812387,0.0,0.0,0.0,0.0,0.0,0.0,1.0,0.0
1.6.4-6,A3450,"CP4 Design",7112,"CCGTD1_IPS",TT_FinMile,"58801",-,-,-,100,TK_Complete,09/09/2020,26/09/2016,09/09/2020,26/09/2016,"","","","",267,97,267,97,62,22,62,22,96,,"CCGT D1_Integrated Programme Schedule;PMT - Project Management Team;PGMS",0,0,0.0,0.0,0.0,0,1.0,0.0000812387,0.0,0.0,0.0,0.0,0.0,0.0,1.0,0.0
1.6.4-7,A3460,"Construction",7112,"CCGTD1_IPS",TT_FinMile,"58801",-,-,-,100,TK_Complete,09/09/2020,26/09/2016,09/09/2020,26/09/2016,"","","","",267,97,267,97,62,22,62,22,96,,"CCGT D1_Integrated Programme Schedule;PMT - Project Management Team;PGMS",0,0,0.0,0.0,0.0,0,1.0,0.0000812387,0.0,0.0,0.0,0.0,0.0,0.0,1.0,0.0
1.6.4-8,A3470,"CP Commissioning & Start Up",7112,"CCGTD1_IPS",TT_FinMile,"58801",-,-,-,100,TK_Complete,09/09/2020,21/01/2020,09/09/2020,21/01/2020,"","","","",267,270,267,270,62,63,62,63,96,,"CCGT D1_Integrated Programme Schedule;PMT - Project Management Team;PGMS",0,0,0.0,0.0,0.0,0,1.0,0.0000812387,0.0,0.0,0.0,0.0,0.0,0.0,1.0,0.0
1.6.4-9,A3480,"Project Acceptance Gate",7112,"CCGTD1_IPS",TT_FinMile,"58801",-,-,-,100,TK_Complete,09/09/2020,31/05/2021,09/09/2020,31/05/2021,"","","","",267,341,267,341,62,79,62,79,96,,"CCGT D1_Integrated Programme Schedule;PMT - Project Management Team;PGMS",0,0,0.0,0.0,0.0,0,1.0,0.0000812387,0.0,0.0,0.0,0.0,0.0,0.0,1.0,0.0
