# As-built period from Jun 2014 to Nov 2015

Schedule from Primavera P6, 2014-03-17 to 2017-11-26, data date 2017-01-01, A marks actual dates.
Baseline Data Date 1-Dec-15

## Calendars

- W11 6 day site - stoppage at CNY: Mon-Sat 08:00-12:00, 13:00-17:00; Sun off. Exceptions (off unless hours are given): 2014-04-05, 2014-05-01, 2014-06-02, 2014-07-01, 2014-09-08 08:00-12:00, 13:00-17:00, 2014-09-09, 2014-10-01 to 2014-10-02, 2014-12-25 to 2014-12-26, 2015-01-01, 2015-02-16 to 2015-02-21, 2015-04-06, 2015-05-01, 2015-06-20, 2015-07-01, 2015-09-28, 2015-10-01, 2015-10-21, 2015-12-25 to 2015-12-26, 2016-01-01, 2016-12-25, 2017-01-01.
- W11 7 day no hols: Mon-Sun 08:00-16:00. Exceptions (off unless hours are given): 2015-12-25, 2016-01-01, 2016-12-25, 2017-01-01.
- W11 6 day site - no stoppage at CNY: Mon 08:00-16:00; Tue-Sat 08:00-12:00, 13:00-17:00; Sun off. Exceptions (off unless hours are given): 2014-04-05, 2014-05-01, 2014-06-02, 2014-07-01, 2014-09-08, 2014-10-01 to 2014-10-02, 2014-12-25 to 2014-12-26, 2015-01-01, 2015-02-16 to 2015-02-18 08:00-16:00, 2015-02-19 to 2015-02-21, 2015-04-06, 2015-05-01, 2015-09-28, 2015-12-25, 2016-01-01, 2016-12-25, 2017-01-01.
- W11 7 day site: Mon 08:00-12:00, 13:00-17:00; Tue 08:00-16:00; Wed-Sun 08:00-12:00, 13:00-17:00. Exceptions (off unless hours are given): 2014-04-05, 2014-05-01, 2014-06-02, 2014-07-01, 2014-09-08, 2014-10-01 to 2014-10-02, 2014-12-25 to 2014-12-26, 2015-01-01, 2015-02-16 to 2015-02-22, 2015-04-06, 2015-05-01, 2015-09-28, 2015-12-25 to 2015-12-26, 2016-01-01, 2016-12-25, 2017-01-01.

## Schedule

| ID | WBS | Activity | Type | Duration | Start | Finish | Predecessors | Complete | Planned start | Planned finish | Total float | Free float | Constraint | Calendar | Contract Key Dates |
| --- | --- | --- | --- | --- | --- | --- | --- | --- | --- | --- | --- | --- | --- | --- | --- |
|  | 1 | **Key Dates** |  |  | 2014-04-28 | 2017-11-26 |  |  |  |  |  |  |  |  |  |
|  | 1 | **Appendix C2 - Critical Dates** |  |  | 2014-12-23 | 2017-11-26 |  |  |  |  |  |  |  |  |  |
|  | 1 | **Table 1 - Whole of the Works** |  |  | 2017-11-26 | 2017-11-26 |  |  |  |  |  |  |  |  |  |
| 822-KD-CD-1000 |  | Completion of the Whole of the Works | milestone | 0d | 2017-11-26 | 2017-11-26 | 822-KD-DC-1000 SF, 822-KD-P-2000 FF, 822-KD-DC-1210 SF, 822-KD-DC-1220 SF, 822-KD-DC-1230 SF, 822-KD-DC-1240 SF, 822-KD-DC-1250 SF, 822-KD-IPS-A13 FF, 822-KD-IPS-A14 FF, 822-KD-IPS-B10 FF, 822-KD-IPS-B09 FF, 822-KD-IPS-C0514 FF, 822-KD-IPS-C04 a FF, 822-KD-IPS-C06 FF, 822-KD-IPS-C07 FF, 822-KD-IPS-C08 FF, 822-KD-IPS-D06 FF, 822-KD-IPS-D07 FF, 822-KD-IPS-E03 FF, 822-KD-IPS-E04 FF, 822-KD-IPS-E05 FF, 822-KD-IPS-E06 FF, 822-KD-IPS-E07 FF, 822-KD-IPS-F06 FF, 822-KD-IPS-F07 FF, 822-KD-IPS-F08 FF, 822-KD-IPS-F09 FF, 822-KD-IPS-F10 FF, 822-KD-IPS-F11 FF, 822-KD-IPS-G01 FF, 822-KD-IPS-G02 FF, 822-KD-IPS-G03 FF, 822-KD-IPS-G04 FF, 822-KD-IPS-G05 FF, 822-KD-IPS-G06 FF, 822-KD-IPS-G07 FF, 822-KD-DC-1260 SF, 822-KD-IPS-A11 FF, 822-KD-IPS-B0839a, 822-KD-IPS-B0849a, 822-KD-IPS-B0889a, 822-KD-IPS-B0859a, 822-KD-IPS-B0869b, 822-KD-IPS-B0879b, 822-KD-IPS-B0899a, 822-KD-IPS-C0524 FF, 822-KD-IPS-C0416 FF, 822-KD-IPS-C0426 FF, 822-KD-IPS-C0436 FF, 822-KD-IPS-C0446 FF, 822-KD-IPS-C0456 FF, 822-KD-IPS-C0617 FF, 822-KD-IPS-C0627 FF, 822-KD-IPS-F0516 FF, 822-KD-IPS-F0526 FF, 822-KD-IPS-F0617 FF, 822-KD-IPS-F0627 FF, 822-KD-IPS-F0637 FF, 822-KD-IPS-F0647 FF, 822-KD-IPS-F0657 FF, 822-KD-IPS-F0667 FF, 822-KD-IPS-F0677 FF, 822-KD-IPS-F0687 FF, 822-KD-IPS-F0697 FF, 822-KD-IPS-G0011, 822-KD-IPS-G0021, 822-KD-IPS-G0031, 822-KD-IPS-G0041, 822-KD-IPS-G0051, 822-KD-IPS-G0061, 822-KD-IPS-G0071, 822-KD-IPS-G0081, 822-KD-IPS-G0091, 822-KD-IPS-G0112, 822-KD-IPS-G0122 |  |  |  | -926d | 0d | finish on 2015-05-10 | W11 7 day no hols | 01 |
|  | 2 | **Table 4 - Specified Degrees of Completion** |  |  | 2014-12-23 | 2017-08-09 |  |  |  |  |  |  |  |  |  |
| 822-KD-SDC-4E-1 |  | SM EAP Adit - all rooms and common areas Degree 1 | milestone | 0d | 2014-12-23 A | 2014-12-23 A | 822-KD-P-1175 FF | 100% | 2015-01-02 | 2015-01-02 |  |  | finish on 2014-08-31 | W11 7 day no hols | 01 |
| 822-KD-SDC-4A-1 |  | Tunnels from Northern to Southern Limit Degree 1 (revised 14/03/14) | milestone | 0d | 2015-03-02 A | 2015-03-02 A | 822-KD-P-1000 FF, 822-KD-P-1010 FF, 822-KD-P-1070 FF, 822-KD-P-1020 FF, 822-KD-P-1030 FF, 822-KD-P-1040 FF, 822-KD-P-1050 FF, 822-KD-P-1060 FF, 822-KD-P-1130 FF, 822-KD-P-1100 FF, 822-KD-P-1120 FF, 822-KD-P-1110 FF, 822-KD-P-1090 FF, 822-KD-P-1200 FF, 822-KD-P-2010 FF | 100% | 2015-11-24 | 2015-11-24 |  |  | finish on 2015-05-02 | W11 7 day no hols | 01 |
| 822-KD-SDC-4F-1 |  | PH Ventilation Adit - Common areas Degree 1 | milestone | 0d | 2015-04-09 A | 2015-04-09 A | 822-KD-P-1140 FF, 822-PH-VA-FW-1000 FF | 100% | 2015-05-01 | 2015-05-01 |  |  | finish on 2014-11-02 | W11 7 day no hols | 01 |
| 822-KD-SDC-4H-1 |  | PH Vehicular Access Adit - All rooms Degree 1 | milestone | 0d | 2015-04-30 A | 2015-04-30 A | 822-KD-P-1150 FF, 822-KD-P-1155 FF, 822-KD-P-1080 FF | 100% | 2015-06-14 | 2015-06-14 |  |  | finish on 2014-11-02 | W11 7 day no hols | 01 |
| 822-KD-SDC-4E-2 |  | SM EAP Adit - all rooms and common areas Degree 2 | milestone | 0d | 2015-06-17 A | 2015-06-17 A | 822-KD-P-1175 FF, 822-SM-EAP-FW-1010 FF | 100% | 2015-08-01 | 2015-08-01 |  |  | finish on 2014-04-28 | W11 7 day no hols | 01 |
| 822-KD-SDC-4C-3 |  | PH Vent Building - all rooms and common areas Degree 3 | milestone | 0d | 2015-07-25 A | 2015-07-25 A | 822-PH-VB4-IW-1020 FF | 100% | 2015-09-01 | 2015-09-01 |  |  | finish on 2014-04-28 | W11 7 day no hols | 01 |
| 822-KD-SDC-4F-2 |  | PH Ventilation Adit - Common areas Degree 2 | milestone | 0d | 2017-01-02 | 2017-01-02 | 822-PH-VA-FW-1010 FF |  |  |  | -975d | 328d | finish on 2014-04-28 | W11 7 day no hols | 01 |
| 822-KD-SDC-4G-1 |  | PH Vehicular Access Adit - Common areas Degree 1 | milestone | 0d | 2017-01-29 | 2017-01-29 | 822-KD-P-1150 FF, 822-KD-P-1080 FF, 822-KD-P-1155 FF |  |  |  | -1303d | 301d | finish on 2013-06-30 | W11 7 day no hols | 01 |
| 822-KD-SDC-4F-3 |  | PH Ventilation Adit - Common areas Degree 3 | milestone | 0d | 2017-01-30 | 2017-01-30 | 822-PH-VA-FW-1030 FF |  |  |  | -1004d | 299d | finish on 2014-04-28 | W11 7 day no hols | 01 |
| 822-KD-SDC-4G-2 |  | PH Vehicular Access Adit - Common areas Degree 2 | milestone | 0d | 2017-02-01 | 2017-02-01 | 822-PH-VAA-FW-1000 FF |  |  |  | -1005d | 298d | finish on 2014-04-28 | W11 7 day no hols | 01 |
| 822-KD-SDC-4H-2 |  | PH Vehicular Access Adit - All rooms Degree 2 | milestone | 0d | 2017-02-01 | 2017-02-01 | 822-PH-VAA-FW-1020 FF |  |  |  | -1005d | 298d | finish on 2014-04-28 | W11 7 day no hols | 01 |
| 822-KD-SDC-4B-1 |  | SM Vent Building and Shaft - all rooms and common areas Degree 1 | milestone | 0d | 2017-02-09 | 2017-02-09 | 822-KD-P-1190 FF, 822-SM-VB5-FW-1140 FF, 822-SM-S-FW-1000 FF, 822-KD-IPS-G03 FF |  |  |  | -1316d | 289d | finish on 2013-06-29 | W11 7 day no hols | 01 |
| 822-KD-SDC-4E-3 |  | SM EAP Adit - all rooms and common areas Degree 3 | milestone | 0d | 2017-02-15 | 2017-02-15 | 822-KD-P-1175 FF, 822-SM-EAP-FW-1030 FF |  |  |  | -1019d | 284d | finish on 2014-04-28 | W11 7 day no hols | 01 |
| 822-KD-SDC-4H-3 |  | PH Vehicular Access Adit - All rooms Degree 3 | milestone | 0d | 2017-03-02 | 2017-03-02 | 822-PH-VAA-FW-1030 FF |  |  |  | -1034d | 269d | finish on 2014-04-28 | W11 7 day no hols | 01 |
| 822-KD-SDC-4G-3 |  | PH Vehicular Access Adit - Common areas Degree 3 | milestone | 0d | 2017-03-30 | 2017-03-30 | 822-PH-VAA-FW-1040 FF |  |  |  | -1062d | 241d | finish on 2014-04-28 | W11 7 day no hols | 01 |
| 822-KD-SDC-4B-2 |  | SM Vent Building and Shaft - all rooms and common areas Degree 2 | milestone | 0d | 2017-06-07 | 2017-06-07 | 822-SM-VB5-FW-1150 FF |  |  |  | -1132d | 171d | finish on 2014-04-28 | W11 7 day no hols | 01 |
| 822-KD-SDC-4B-3 |  | SM Vent Building and Shaft - all rooms and common areas Degree 3 | milestone | 0d | 2017-08-09 | 2017-08-09 | 822-SM-VB5-FW-1170 FF, 822-SM-S-FW-1010 FF |  |  |  | -1195d | 108d | finish on 2014-04-28 | W11 7 day no hols | 01 |
|  | 2 | **IPS Milestones** |  |  | 2014-05-28 | 2017-11-26 |  |  |  |  |  |  |  |  |  |
|  | 1 | **Cost Centre A - Preliminaries** |  |  | 2015-03-02 | 2017-11-26 |  |  |  |  |  |  |  |  |  |
| 822-KD-IPS-A11 |  | Achieve Degree 1 Completion for the tunnels both UT and DT | milestone | 0d | 2015-03-02 A | 2015-03-02 A | 822-KD-P-1000 FF, 822-KD-P-1010 FF, 822-KD-P-1020 FF, 822-KD-P-1030 FF, 822-KD-P-1040 FF, 822-KD-P-1050 FF, 822-KD-P-1060 FF, 822-KD-P-1070 FF, 822-KD-P-1090 FF, 822-KD-P-1100 FF, 822-KD-P-1110 FF, 822-KD-P-1120 FF, 822-KD-P-1130 FF, 822-KD-P-1200 FF | 100% | 2015-03-07 | 2015-03-07 |  |  |  | W11 7 day no hols | 01 |
| 822-KD-IPS-A13 |  | Approval of draft O&M Manuals and draft as-built drawings for the Whole of the Works | milestone | 0d | 2017-02-26 | 2017-02-26 | 822-D-AB-1030 FF, 822-D-AB-1010 FF, 822-D-AB-1000 FF, 822-D-AB-1020 FF, 822-D-OM-1010 FF |  |  |  | -653d | 273d |  | W11 7 day no hols | 01 |
| 822-KD-IPS-A14 |  | Approval of O&M Manuals and as-built drawings for the Whole of the Works | milestone | 0d | 2017-11-26 | 2017-11-26 | 822-D-OM-1030 FF, 822-D-AB-1090 FF |  |  |  | -926d | 0d |  | W11 7 day no hols | 01 |

| ID | WBS | Activity | Type | Duration | Start | Finish | Predecessors | Complete | Planned start | Planned finish | Total float | Free float | Calendar | Contract Key Dates |
| --- | --- | --- | --- | --- | --- | --- | --- | --- | --- | --- | --- | --- | --- | --- |
|  | 2 | **Cost Centre B - PH to SY Tunnels** |  |  | 2014-08-25 | 2015-02-28 |  |  |  |  |  |  |  |  |
| 822-KD-IPS-B0889a |  | Complete 50% Type E Nozzles | milestone | 0d | 2014-08-25 A | 2014-08-25 A | 822-PH-E-N-1100 FF, 822-PH-E-N-1140 FF, 822-PH-E-S-1070 FF, 822-PH-E-S-1110 FF | 100% | 2014-10-01 | 2014-10-01 |  |  | W11 7 day no hols | 01 |
| 822-KD-IPS-B0839a |  | Complete 82% central wall & 59% walkway & derailment kerb | milestone | 0d | 2014-09-30 A | 2014-09-30 A | 822-MT-CN-CW-1040 FF, 822-MT-MN-CW-1000 FF, 822-MT-CN-EW-1130 FF, 822-MT-MS-EW-1020 FF, 822-MT-MS-DK-1100 FF, 822-MT-MS-DK-1080 FF, 822-MT-CS-DK-1050 FF, 822-MT-CN-EW-1040 FF, 822-MT-CN-DK-1070 FF, 822-MT-MN-EW-1010 FF | 100% | 2014-10-08 | 2014-10-08 |  |  | W11 7 day no hols | 01 |
| 822-KD-IPS-B0869b |  | Main Tunnel DT 6.16km from 821 interface to Type E nozzel (south) | milestone | 0d | 2014-10-01 A | 2014-10-01 A | 822-MT-CN-CW-1130 FF, 822-MT-CN-EW-1200 FF, 822-MT-CN-EW-1210 FF, 822-MT-CN-EW-1220 FF, 822-MT-CN-DK-1410 FF, 822-MT-CN-DK-1095 FF, 822-MT-CN-CW-1106 FF, 822-MT-CN-EW-1190 FF, 822-MT-CN-DK-1460 FF, 822-MT-CN-DK-1490 FF, 822-MT-MS-CW-1020 FF, 822-MT-MS-EW-1070 FF, 822-MT-MS-DK-1020 FF, 822-MT-MS-DK-1080 FF, 822-MT-CS-DK-1020 FF, 822-MT-CS-DK-1030 FF | 100% | 2014-10-08 | 2014-10-08 |  |  | W11 7 day no hols | 01 |
| 822-KD-IPS-B0849a |  | Complete 94% central wall & 77% walkway & deraillment kerb | milestone | 0d | 2014-10-04 A | 2014-10-04 A | 822-MT-MN-CW-1010 FF, 822-MT-MN-EW-1030 FF, 822-MT-CN-EW-1100 FF, 822-MT-CN-DK-1400 FF, 822-MT-CN-DK-1090 FF, 822-MT-CN-CW-1106 FF, 822-MT-CN-EW-1170 FF | 100% | 2014-11-06 | 2014-11-06 |  |  | W11 7 day no hols | 01 |
| 822-KD-IPS-B0859a |  | Complete 96% central wall & 80% walkway & derailment kerb | milestone | 0d | 2014-10-11 A | 2014-10-11 A | 822-MT-G-CW-1080 FF, 822-MT-G-CW-1035 FF, 822-MT-G-W-1030 FF, 822-MT-CN-CW-1050 FF, 822-MT-CN-EW-1110 FF, 822-MT-CN-DK-1095 FF, 822-MT-CN-CW-1120 FF, 822-MT-CN-EW-1180 FF, 822-MT-CN-DK-1460 FF, 822-MT-CN-DK-1390 FF | 100% | 2014-11-12 | 2014-11-12 |  |  | W11 7 day no hols | 01 |
| 822-KD-IPS-B0879b |  | Main Tunnel UT 6.16km from 821 interface to Type E nozzel (south) | milestone | 0d | 2014-12-06 A | 2014-12-06 A | 822-MT-CN-CW-1130 FF, 822-MT-CN-EW-1150 FF, 822-MT-CN-EW-1200 FF, 822-MT-CN-EW-1210 FF, 822-MT-CN-EW-1220 FF, 822-MT-CN-DK-1420 FF, 822-MT-CN-DK-1440 FF, 822-MT-CN-CW-1106 FF, 822-MT-CN-EW-1180 FF, 822-MT-CN-DK-1470 FF, 822-MT-CN-DK-1480 FF, 822-MT-MS-CW-1020 FF, 822-MT-MS-EW-1060 FF, 822-MT-MS-DK-1000 FF, 822-MT-MS-DK-1040 FF, 822-MT-MS-DK-1050 FF, 822-MT-MS-DK-1090 FF, 822-MT-CS-EW-1030 FF, 822-MT-CS-DK-1000 FF, 822-MT-CS-DK-1040 FF, 822-MT-CS-DK-1060 FF, 822-MT-CS-DK-1070 FF | 100% | 2015-01-23 | 2015-01-23 |  |  | W11 7 day no hols | 01 |
| 822-KD-IPS-B0899a |  | Complete 100% Type E Nozzles | milestone | 0d | 2014-12-15 A | 2014-12-15 A | 822-PH-E-S-1190 FF, 822-PH-E-N-1220 FF | 100% | 2015-01-27 | 2015-01-27 |  |  | W11 7 day no hols | 01 |
| 822-KD-IPS-B09 |  | Degree 1 Completion of the tunnels (UT and DT) | milestone | 0d | 2015-02-28 A | 2015-02-28 A | 822-KD-P-1000 FF, 822-KD-P-1010 FF, 822-KD-P-1070 FF, 822-KD-P-1020 FF, 822-KD-P-1030 FF, 822-KD-P-1040 FF, 822-KD-P-1050 FF, 822-KD-P-1060 FF, 822-KD-P-1130 FF, 822-KD-P-1100 FF, 822-KD-P-1120 FF, 822-KD-P-1110 FF, 822-KD-P-1090 FF, 822-KD-P-1200 FF | 100% | 2015-03-16 | 2015-03-16 |  |  | W11 7 day no hols | 01 |
| 822-KD-IPS-B10 |  | Substantially Complete All Works | milestone | 0d | 2015-02-28 A | 2015-02-28 A | 822-KD-P-1000 FF, 822-KD-P-1010 FF, 822-KD-P-1070 FF, 822-KD-P-1020 FF, 822-KD-P-1030 FF, 822-KD-P-1040 FF, 822-KD-P-1050 FF, 822-KD-P-1060 FF, 822-KD-P-1130 FF, 822-KD-P-1100 FF, 822-KD-P-1120 FF, 822-KD-P-1110 FF, 822-KD-P-1090 FF, 822-KD-P-1200 FF | 100% | 2015-03-16 | 2015-03-16 |  |  | W11 7 day no hols | 01 |
|  | 3 | **Cost Centre C - Adits Connecting VB4 and Track Alignment** |  |  | 2014-05-28 | 2017-06-22 |  |  |  |  |  |  |  |  |
| 822-KD-IPS-C0514 |  | Complete 67% lining for PHVA | milestone | 0d | 2014-05-28 A | 2014-05-28 A | 822-PH-VA-KL-1190 FF, 822-PH-VA-KL-1000 FF | 100% | 2014-09-01 | 2014-09-01 |  |  | W11 7 day no hols | 01 |
| 822-KD-IPS-C0524 |  | Complete 73% lining for PHVAA | milestone | 0d | 2014-07-18 A | 2014-07-18 A | 822-PH-VAA-JL-1030 FF | 100% | 2014-09-01 | 2014-09-01 |  |  | W11 7 day no hols | 01 |
| 822-KD-IPS-C04 a |  | Complete 81% lining for PHVAA | milestone | 0d | 2014-08-30 A | 2014-08-30 A | 822-PH-VAA-TP-1040 FF, 822-PH-VAA-JL-1030 FF, 822-PH-VAA-TP-1050 FF | 100% | 2014-11-01 | 2014-11-01 |  |  | W11 7 day no hols | 01 |
| 822-KD-IPS-C0416 |  | Complete 25% internal structures for PHVAA (excluding Roadway&D-kerb) | milestone | 0d | 2014-11-15 A | 2014-11-15 A | 822-PH-VAA-IS-1020 FF | 100% | 2015-01-23 | 2015-01-23 |  |  | W11 7 day no hols | 01 |
| 822-KD-IPS-C0426 |  | Complete 45% internal structures for PHVAA (excluding Roadway&D-kerb) | milestone | 0d | 2015-01-05 A | 2015-01-05 A | 822-PH-VAA-IS-1050 FF | 100% | 2015-02-04 | 2015-02-04 |  |  | W11 7 day no hols | 01 |
| 822-KD-IPS-C0436 |  | Complete 65% internal structures for PHVAA (excluding Roadway & D-kerb) | milestone | 0d | 2015-01-20 A | 2015-01-20 A | 822-PH-VAA-IS-1060 FF | 100% | 2015-02-10 | 2015-02-10 |  |  | W11 7 day no hols | 01 |
| 822-KD-IPS-C0456 |  | Complete adit lining (external) for PHVAA (excluding J33 &34 TCA1 opening and J56 & J57) | milestone | 0d | 2015-03-11 A | 2015-03-11 A | 822-PH-VAA-TP-1050 FF, 822-PH-VAA-H-1160 FF | 100% | 2015-03-16 | 2015-03-16 |  |  | W11 7 day no hols | 01 |
| 822-KD-IPS-C0446 |  | Complete 100% centre wall for PHVA | milestone | 0d | 2015-03-16 A | 2015-03-16 A | 822-PH-VA-CW-1070 FF, 822-PH-VA-CW-1010 FF | 100% |  |  |  |  | W11 7 day no hols | 01 |
| 822-KD-IPS-C07 |  | Degree 2 Completion of PHVAA (All Rooms) | milestone | 0d | 2015-03-31 A | 2015-03-31 A | 822-PH-VAA-FW-1020 FF | 100% | 2015-11-30 | 2015-11-30 |  |  | W11 7 day no hols | 01 |
| 822-KD-IPS-C0617 |  | Degree 1 Completion of Link Structure | milestone | 0d | 2015-06-13 A | 2015-06-13 A | 822-KD-P-1155 FF | 100% | 2015-09-01 | 2015-09-01 |  |  | W11 7 day no hols | 01 |
| 822-KD-IPS-C06 |  | Degree 1 Completion of PHVA & PHVAA (Common Areas) | milestone | 0d | 2017-01-29 | 2017-01-29 | 822-KD-P-1140 FF, 822-KD-P-1150 FF |  |  |  | -625d | 301d | W11 7 day no hols | 01 |
| 822-KD-IPS-C0627 |  | Degree 1 Completion for all rooms in PHVAA | milestone | 0d | 2017-01-29 | 2017-01-29 | 822-KD-P-1150 FF |  |  |  | -625d | 301d | W11 7 day no hols | 01 |
| 822-KD-IPS-C08 |  | Substantial Completion of PHVAA & statutory inspection successful | milestone | 0d | 2017-06-22 | 2017-06-22 | 822-PH-VAA-FW-1010 FF, 822-PH-VAA-FW-1050 FF |  |  |  | -769d | 157d | W11 7 day no hols | 01 |

| ID | WBS | Activity | Type | Duration | Start | Finish | Predecessors | Complete | Planned start | Planned finish | Total float | Free float | Calendar | Contract Key Dates |
| --- | --- | --- | --- | --- | --- | --- | --- | --- | --- | --- | --- | --- | --- | --- |
|  | 4 | **Cost Centre D - VB4 and Associated Works** |  |  | 2014-11-29 | 2017-10-18 |  |  |  |  |  |  |  |  |
| 822-KD-IPS-D06 |  | All permanent doors installed | milestone | 0d | 2014-11-29 A | 2014-11-29 A | 822-PH-VB4-IW-1010 FF | 100% | 2015-01-16 | 2015-01-16 |  |  | W11 7 day no hols | 01 |
| 822-KD-IPS-D07 |  | All works substantially complete & statutory inspection successful | milestone | 0d | 2017-10-18 | 2017-10-18 | 822-KD-P-1170 FF+100d, 822-PH-VB4-IW-1000 FF, 822-PH-VB4-IW-1030 FF |  |  |  | -887d | 39d | W11 7 day no hols | 01 |
|  | 5 | **Cost Centre E - Adits Connecting SM Shaft and Track Alignment** |  |  | 2014-05-29 | 2017-02-15 |  |  |  |  |  |  |  |  |
| 822-KD-IPS-E03 |  | Complete lining of EAP Adit | milestone | 0d | 2014-05-29 A | 2014-05-29 A | 822-SM-EAP-L-1020 FF | 100% | 2014-09-01 | 2014-09-01 |  |  | W11 7 day no hols | 01 |
| 822-KD-IPS-E04 |  | Complete internal structure of EAP Adit | milestone | 0d | 2014-11-28 A | 2014-11-28 A | 822-SM-EAP-IS-1080 FF, 822-SM-EAP-IS-1050 FF, 822-SM-EAP-IS-1020 FF | 100% | 2015-01-16 | 2015-01-16 |  |  | W11 7 day no hols | 01 |
| 822-KD-IPS-E05 |  | Degree 1 completion of EAP Adit | milestone | 0d | 2014-12-22 A | 2014-12-22 A | 822-KD-P-1175 FF | 100% | 2015-01-02 | 2015-01-02 |  |  | W11 7 day no hols | 01 |
| 822-KD-IPS-E06 |  | Degree 2 completion of EAP Adit | milestone | 0d | 2015-06-17 A | 2015-06-17 A | 822-SM-EAP-FW-1010 FF | 100% | 2015-08-01 | 2015-08-01 |  |  | W11 7 day no hols | 01 |
| 822-KD-IPS-E07 |  | Substantially complete all works | milestone | 0d | 2017-02-15 | 2017-02-15 | 822-SM-EAP-FW-1020 FF, 822-SM-EAP-FW-1030 FF |  |  |  | -642d | 284d | W11 7 day no hols | 01 |
|  | 6 | **Cost Centre F - SM EAP and Vent Shaft** |  |  | 2014-06-26 | 2017-08-09 |  |  |  |  |  |  |  |  |
| 822-KD-IPS-F0516 |  | Complete shaft wall structure up to -12mPD | milestone | 0d | 2014-06-26 A | 2014-06-26 A | 822-SM-S-L-1010 SF+24d | 100% | 2014-09-01 | 2014-09-01 |  |  | W11 7 day no hols | 01 |
| 822-KD-IPS-F0526 |  | Complete shaft wall structure up to +0mPD | milestone | 0d | 2014-07-04 A | 2014-07-04 A | 822-SM-S-L-1010 FF | 100% | 2014-09-01 | 2014-09-01 |  |  | W11 7 day no hols | 01 |
| 822-KD-IPS-F06 |  | Complete shaft wall structure up to +57mPD | milestone | 0d | 2014-08-10 A | 2014-08-10 A | 822-SM-S-L-1040 FF | 100% | 2014-09-01 | 2014-09-01 |  |  | W11 7 day no hols | 01 |
| 822-KD-IPS-F0617 |  | Install pre-cast stair units to L11 | milestone | 0d | 2014-11-06 A | 2014-11-06 A | 822-SM-S-L11-1010 FF | 100% | 2014-12-20 | 2014-12-20 |  |  | W11 7 day no hols | 01 |
| 822-KD-IPS-F0627 |  | Complete to L11 slab and beams | milestone | 0d | 2014-11-06 A | 2014-11-06 A | 822-SM-S-L11-1000 FF, 822-SM-S-L11-1010 FF | 100% | 2014-12-24 | 2014-12-24 |  |  | W11 7 day no hols | 01 |
| 822-KD-IPS-F0647 |  | Complete installation of pre-cast stair units | milestone | 0d | 2014-12-13 A | 2014-12-13 A | 822-SM-S-L4-1040 FF | 100% | 2015-03-06 | 2015-03-06 |  |  | W11 7 day no hols | 01 |
| 822-KD-IPS-F0637 |  | Degree 1 completion of all rooms in EAP + complete L8 slabs and beams | milestone | 0d | 2014-12-22 A | 2014-12-22 A | 822-SM-EAP-FW-1000 FF | 100% | 2015-01-01 | 2015-01-01 |  |  | W11 7 day no hols | 01 |
| 822-KD-IPS-F0657 |  | Complete to L7 slabs and beams | milestone | 0d | 2015-02-25 A | 2015-02-25 A | 822-SM-S-L7-1000 FF, 822-SM-S-L7-1010 FF, 822-SM-S-L7-1020 FF, 822-SM-S-L7-1030 FF | 100% | 2015-03-02 | 2015-03-02 |  |  | W11 7 day no hols | 01 |
| 822-KD-IPS-F0677 |  | Complete base slab for foul water tank at +30.5mPD | milestone | 0d | 2015-03-07 A | 2015-03-07 A | 822-SM-S-L6-1030 FF-36d | 100% | 2015-03-16 | 2015-03-16 |  |  | W11 7 day no hols | 01 |
| 822-KD-IPS-F0687 |  | Completet L5 slab and beams | milestone | 0d | 2015-04-15 A | 2015-04-15 A | 822-SM-S-L5-1000 FF, 822-SM-S-L5-1010 FF, 822-SM-S-L5-1020 FF, 822-SM-S-L5-1030 FF | 100% | 2015-05-01 | 2015-05-01 |  |  | W11 7 day no hols | 01 |
| 822-KD-IPS-F07 |  | Degree 1 completion of all rooms within Vent Shaft | milestone | 0d | 2015-05-28 A | 2015-05-28 A | 822-SM-S-FW-1000 FF | 100% | 2015-08-01 | 2015-08-01 |  |  | W11 7 day no hols | 01 |
| 822-KD-IPS-F0667 |  | Degree 2 completion of all rooms in EAP | milestone | 0d | 2015-06-17 A | 2015-06-17 A | 822-SM-EAP-FW-1010 FF | 100% | 2015-08-01 | 2015-08-01 |  |  | W11 7 day no hols | 01 |
| 822-KD-IPS-F0697 |  | Degree 3 completion for all rooms in EAP and complete shaft structure | milestone | 0d | 2017-02-15 | 2017-02-15 | 822-SM-EAP-FW-1030 FF |  |  |  | -642d | 284d | W11 7 day no hols | 01 |
| 822-KD-IPS-F08 |  | Degree 2 completion of all rooms within Vent Shaft | milestone | 0d | 2017-06-07 | 2017-06-07 | 822-SM-VB5-FW-1150 FF |  |  |  | -755d | 171d | W11 7 day no hols | 01 |
| 822-KD-IPS-F09 |  | Degree 3 completion of all rooms within Vent Shaft | milestone | 0d | 2017-08-09 | 2017-08-09 | 822-SM-S-FW-1010 FF |  |  |  | -818d | 108d | W11 7 day no hols | 01 |
| 822-KD-IPS-F10 |  | All permanent doors installed | milestone | 0d | 2017-08-09 | 2017-08-09 | 822-SM-VB5-FW-1160 FF, 822-SM-VB5-FW-1170 |  |  |  | -818d | 108d | W11 7 day no hols | 01 |
| 822-KD-IPS-F11 |  | All works substantially complete & statutory inspection successful | milestone | 0d | 2017-08-09 | 2017-08-09 | 822-SM-S-FW-1010 FF, 822-SM-VB5-FW-1170 FF |  |  |  | -818d | 108d | W11 7 day no hols | 01 |

| ID | WBS | Activity | Type | Duration | Start | Finish | Predecessors | Complete | Planned start | Planned finish | Total float | Free float | Constraint | Calendar | Contract Key Dates | 822_AB_W11v4 |
| --- | --- | --- | --- | --- | --- | --- | --- | --- | --- | --- | --- | --- | --- | --- | --- | --- |
|  | 7 | **Cost Centre G - VB5 and Associated Works** |  |  | 2014-06-27 | 2017-11-01 |  |  |  |  |  |  |  |  |  |  |
| 822-KD-IPS-G0011 |  | Complete structure of SMVB GL A-D Ground Level double slab | milestone | 0d | 2014-06-27 A | 2014-06-27 A | 822-SM-VB5-1A-1010 FF | 100% | 2014-09-01 | 2014-09-01 |  |  |  | W11 7 day no hols | 01 |  |
| 822-KD-IPS-G0021 |  | Complete structure of SMVB GL A-D Level 1 to G/F | milestone | 0d | 2014-10-11 A | 2014-10-11 A | 822-SM-VB5-1A-1030 FF | 100% | 2014-11-01 | 2014-11-01 |  |  |  | W11 7 day no hols | 01 |  |
| 822-KD-IPS-G0031 |  | Complete structure of SMVB GL A-C Ground Level to U1 Level | milestone | 0d | 2014-11-04 A | 2014-11-04 A | 822-SM-VB5-GA-1030 FF | 100% | 2014-12-18 | 2014-12-18 |  |  |  | W11 7 day no hols | 01 |  |
| 822-KD-IPS-G0051 |  | Complete structure of SMVB GL D-F Level 4 Slab | milestone | 0d | 2014-11-15 A | 2014-11-15 A | 822-SM-VB5-L4C-1050 FF | 100% | 2015-01-01 | 2015-01-01 |  |  |  | W11 7 day no hols | 01 |  |
| 822-KD-IPS-G0041 |  | Complete structure of SMVB GL A-B U1 to Roof Level (U2) | milestone | 0d | 2014-12-08 A | 2014-12-08 A | 822-SM-VB5-U2A-1010 FF | 100% | 2015-01-23 | 2015-01-23 |  |  |  | W11 7 day no hols | 01 |  |
| 822-KD-IPS-G0061 |  | Complete structure of SMVB GL D-F 50% internal walls and beams on Level 4 to Level 3 | milestone | 0d | 2015-02-25 A | 2015-02-25 A | 822-SM-VB5-L3D-1020 FF | 100% | 2015-03-05 | 2015-03-05 |  |  |  | W11 7 day no hols | 01 |  |
| 822-KD-IPS-G0071 |  | Complete structure of SMVB GL D-F Level 4 to Level 3 | milestone | 0d | 2015-02-25 A | 2015-02-25 A | 822-SM-VB5-L3D-1030 FF, 822-SM-VB5-L3D-1020 FF | 100% | 2015-05-01 | 2015-05-01 |  |  |  | W11 7 day no hols | 01 |  |
| 822-KD-IPS-G0081 |  | Complete structure of SMVB GL D-F Level 3 to Level 2 | milestone | 0d | 2015-03-28 A | 2015-03-28 A | 822-SM-VB5-L2D-2020 FF, 822-SM-VB5-L2D-2010 FF | 100% | 2015-05-17 | 2015-05-17 |  |  |  | W11 7 day no hols | 01 |  |
| 822-KD-IPS-G0091 |  | Complete structure of SMVB GL D-F Level 2 to Level 1 | milestone | 0d | 2015-05-29 A | 2015-05-29 A | 822-SM-VB5-L1D-1050 FF, 822-SM-VB5-L1D-1040 FF | 100% | 2015-07-01 | 2015-07-01 |  |  |  | W11 7 day no hols | 01 |  |
| 822-KD-IPS-G01 |  | Complete structure of SM Vent Building up to GL | milestone | 0d | 2015-08-19 A | 2015-08-19 A | 822-SM-VB5-1A-1020 FF, 822-SM-VB5-GD-1090 FF, 822-SM-VB5-GD-1080 FF, 822-SM-VB5-GD-1083 FF | 100% | 2015-10-08 | 2015-10-08 |  |  |  | W11 7 day no hols | 01 |  |
| 822-KD-IPS-G0112 |  | Complete structure of SMVB GL B-F Level U1 to U2 | milestone | 0d | 2017-01-07 | 2017-01-07 | 822-SM-VB5-U2B-1010 FF, 822-SM-VB5-U2B-1020 FF, 822-SM-VB5-U2B-1000 FF, 822-SM-VB5-L1D-2010 FF |  |  |  | -603d | 323d |  | W11 7 day no hols | 01 |  |
| 822-KD-IPS-G0122 |  | Complete structure of SMVB GL C-F Level U2 to Roof | milestone | 0d | 2017-01-27 | 2017-01-27 | 822-SM-VB5-RC-1020 FF, 822-SM-VB5-RC-1010 FF, 822-SM-VB5-RC-1000 FF, 822-SM-VB5-RC-2010 |  |  |  | -624d | 302d |  | W11 7 day no hols | 01 |  |
| 822-KD-IPS-G02 |  | Complete structure of SM Vent Building up to roof level | milestone | 0d | 2017-01-27 | 2017-01-27 | 822-SM-VB5-RC-1010 FF, 822-SM-VB5-RC-2010 |  |  |  | -624d | 302d |  | W11 7 day no hols | 01 |  |
| 822-KD-IPS-G03 |  | Degree 1 completion for all rooms in SM Vent Building | milestone | 0d | 2017-02-09 | 2017-02-09 | 822-SM-VB5-FW-1140 FF, 822-SM-VB5-FW-3020 |  |  |  | -1316d | 0d |  | W11 7 day no hols | 01 |  |
| 822-KD-IPS-G04 |  | Degree 2 completion for all rooms in SM Vent Building | milestone | 0d | 2017-06-07 | 2017-06-07 | 822-SM-VB5-FW-1150 FF |  |  |  | -755d | 171d |  | W11 7 day no hols | 01 |  |
| 822-KD-IPS-G05 |  | Degree 3 completion for all rooms in SM Vent Building | milestone | 0d | 2017-08-09 | 2017-08-09 | 822-SM-VB5-FW-1160 FF, 822-SM-VB5-FW-1170 FF |  |  |  | -818d | 108d |  | W11 7 day no hols | 01 |  |
| 822-KD-IPS-G06 |  | All permanent doors installed | milestone | 0d | 2017-08-09 | 2017-08-09 | 822-SM-VB5-FW-1170 FF |  |  |  | -818d | 108d |  | W11 7 day no hols | 01 |  |
| 822-KD-IPS-G07 |  | All works substantially complete & statutory inspection successful | milestone | 0d | 2017-11-01 | 2017-11-01 | 822-KD-P-1195 FF, 822-SM-VB5-FW-1180 FF |  |  |  | -902d | 24d |  | W11 7 day no hols | 01 |  |
|  | 8 | **Cost Centre H - Associated Works** |  |  |  |  |  |  |  |  |  |  |  |  |  |  |
|  | 3 | **Access Dates for DCs** |  |  | 2014-08-25 | 2017-02-10 |  |  |  |  |  |  |  |  |  |  |
| 822-KD-DC-1000 |  | Access for DC to commence OHL Brackets - P Nozzle to tunnel mid-point - UT only | milestone | 0d | 2014-08-25 A | 2014-08-25 A | 822-MT-CN-CW-1120 | 100% | 2014-09-18 | 2014-09-18 |  |  | start on 2014-08-30 | W11 7 day no hols |  | 822_AB_W11v4 |
| 822-KD-DC-1230 |  | Provide DC with access to Main Tunnel DT from South end to E(S) | milestone | 0d | 2014-10-01 A | 2014-10-01 A | 822-MT-2A2-JIS-1050, 822-MT-MS-EW-1030, 822-MT-MS-EW-1050, 822-MT-MS-EW-1070, 822-MT-MS-EW-1000, 822-MT-MS-DK-1020, 822-MT-MS-DK-1100, 822-MT-MS-DK-1010, 822-MT-MS-DK-1030, 822-MT-MS-DK-1080, 822-MT-CN-EW-1120, 822-MT-CN-EW-1160, 822-MT-CN-EW-1190, 822-MT-CN-EW-1240, 822-MT-CN-DK-1360, 822-MT-CN-DK-1380, 822-MT-CN-DK-1460, 822-MT-CN-DK-1350, 822-MT-CN-DK-1390, 822-MT-CN-DK-1490, 822-MT-CN-CW-1050, 822-MT-CN-CW-1110, 822-MT-CN-CW-1150, 822-MT-CN-EW-1000, 822-MT-CN-EW-1040, 822-MT-CN-EW-1110, 822-MT-CN-DK-1005, 822-MT-CN-DK-1060, 822-MT-CN-DK-1070, 822-MT-CN-DK-1100, 822-MT-CN-DK-1410, 822-MT-CN-DK-1040, 822-MT-CN-DK-1050, 822-MT-CN-DK-1080, 822-MT-CN-DK-1090, 822-MT-CN-DK-1095 | 100% | 2014-11-01 | 2014-11-01 |  |  |  | W11 7 day no hols |  | 822_AB_W11v4 |
| 822-KD-DC-1240 |  | Provide DC with access to Main Tunnel UT from South end to E(S) | milestone | 0d | 2014-12-07 A | 2014-12-07 A | 822-KD-P-1100, 822-KD-P-1130, 822-KD-P-1050, 822-KD-P-1060, 822-KD-P-1070 | 100% | 2015-01-23 | 2015-01-23 |  |  |  | W11 7 day no hols |  | 822_AB_W11v4 |
| 822-KD-DC-1260 |  | Provide DC with full access to EAP | milestone | 0d | 2014-12-23 A | 2014-12-23 A | 822-KD-P-1175 | 100% | 2015-01-02 | 2015-01-02 |  |  |  | W11 7 day no hols |  | 822_AB_W11v4 |
| 822-KD-DC-1270 |  | Provide DC with access to PH2A2 & Nozzels | milestone | 0d | 2015-02-14 A | 2015-02-14 A | 822-PH-2A2-1800, 822-PH-E-S-1080, 822-PH-E-S-1200, 822-SY-P-1300, 822-SY-P-1280, 822-SY-P-1290, 822-SY-P-1210, 822-SY-P-1200, 822-SY-P-1190, 822-PH-E-N-1230, 822-PH-E-N-1110, 822-PH-2A2-1800 SS, 822-KD-P-1090, 822-KD-P-1110, 822-KD-P-1120, 822-KD-P-1130 | 100% | 2015-02-16 | 2015-02-16 |  |  |  | W11 7 day no hols |  | 822_AB_W11v4 |
| 822-KD-DC-1210 |  | Provide DC with access to Main Tunnel for rail pulling North end to E(S) - UT & DT | milestone | 0d | 2015-03-02 A | 2015-03-02 A | 822-KD-P-1020, 822-KD-P-1000, 822-KD-P-1010, 822-KD-P-1030, 822-KD-P-1040 | 100% | 2015-03-07 | 2015-03-07 |  |  |  | W11 7 day no hols |  | 822_AB_W11v4 |
| 822-KD-DC-1220 |  | Provide DC with access to full length of Main Tunnel UT & DT | milestone | 0d | 2015-03-02 A | 2015-03-02 A | 822-KD-P-1090, 822-KD-P-1100, 822-KD-P-1110, 822-KD-P-1120, 822-KD-P-1130, 822-KD-P-1200 | 100% | 2015-03-07 | 2015-03-07 |  |  |  | W11 7 day no hols |  | 822_AB_W11v4 |
| 822-KD-DC-1300 |  | Provide DC with access to SMVB L4 to G/F (GL A-D) | milestone | 0d | 2015-03-03 A | 2015-03-03 A | 822-SM-VB5-GA-1040 | 100% | 2015-03-16 | 2015-03-16 |  |  |  | W11 7 day no hols |  | 822_AB_W11v4 |
| 822-KD-DC-1310 |  | Provide DC with access to SMVB U1 to Roof (GL A-B) | milestone | 0d | 2015-03-06 A | 2015-03-06 A | 822-SM-VB5-U2A-1030 | 100% | 2015-03-16 | 2015-03-16 |  |  |  | W11 7 day no hols |  | 822_AB_W11v4 |
| 822-KD-DC-1290 |  | Provide DC with access to PHVA | milestone | 0d | 2015-04-10 A | 2015-04-10 A | 822-KD-P-1140 | 100% | 2015-04-20 | 2015-04-20 |  |  |  | W11 7 day no hols |  | 822_AB_W11v4 |
| 822-KD-DC-1320 |  | Provide DC with access to SMS T.L to L4 (GL D-F) | milestone | 0d | 2015-05-29 A | 2015-05-29 A | 822-SM-VB5-L3D-1070, 822-SM-S-L7-1040, 822-SM-S-L6-1040 | 100% | 2015-06-06 | 2015-06-06 |  |  |  | W11 7 day no hols |  | 822_AB_W11v4 |
| 822-KD-DC-1280 |  | Provide DC with access to PHVAA | milestone | 0d | 2015-06-10 A | 2015-06-10 A | 822-KD-P-1150 | 100% | 2015-12-06 | 2015-12-06 |  |  |  | W11 7 day no hols |  | 822_AB_W11v4 |
| 822-KD-DC-1325 |  | Provide DC with access to SMS L3 to L2 (GL D-F) | milestone | 0d | 2015-06-22 A | 2015-06-22 A | 822-SM-VB5-L1D-1080 | 100% | 2015-09-01 | 2015-09-01 |  |  |  | W11 7 day no hols |  | 822_AB_W11v4 |
| 822-KD-DC-1330 |  | Provide DC with access to SMS L1 to G/F (GL D-F) | milestone | 0d | 2017-01-02 | 2017-01-02 | 822-SM-VB5-U1C-1040 |  |  |  | 328d |  |  | W11 7 day no hols |  |  |
| 822-KD-DC-1250 |  | Provide DC with full access to VB5 | milestone | 0d | 2017-02-10 | 2017-02-10 | 822-KD-P-1190, 822-SM-VB5-FW-3020, 822-SM-VB5-FW-2120 |  |  |  | -637d | 289d |  | W11 7 day no hols |  |  |
| 822-KD-DC-1340 |  | Provide DC with access to SMS U1 to Roof (GL B-F) | milestone | 0d | 2017-02-10 | 2017-02-10 | 822-SM-VB5-FW-1140 |  |  |  | 289d |  |  | W11 7 day no hols |  |  |

| ID | WBS | Activity | Type | Duration | Start | Finish | Predecessors | Complete | Planned start | Planned finish | Total float | Free float | Constraint | Calendar | Contract Key Dates | 822_AB_W11v4 |
| --- | --- | --- | --- | --- | --- | --- | --- | --- | --- | --- | --- | --- | --- | --- | --- | --- |
|  | 5 | **Access Dates for Work Areas** |  |  | 2014-11-01 | 2017-10-01 |  |  |  |  |  |  |  |  |  |  |
|  | 1 | **Works Area Possession Dates** |  |  | 2014-11-01 | 2015-06-07 |  |  |  |  |  |  |  |  |  |  |
|  | 1 | **Pat Heung** |  |  | 2015-03-02 | 2015-03-02 |  |  |  |  |  |  |  |  |  |  |
| 822-KD-A-3260 |  | Take 2nd Possession of Area 6.2 (Pat Heung) | milestone | 0d | 2015-03-02 A | 2015-03-02 A | 822-KD-SS-1000 SS, 822-KD-A-3320 FS+182d | 100% | 2015-09-01 | 2015-09-01 |  |  | start on or after 2014-06-02 | W11 7 day no hols | 01 | 822_AB_W11v4 |
|  | 2 | **Shing Mun** |  |  | 2014-11-01 | 2014-11-01 |  |  |  |  |  |  |  |  |  |  |
| 822-KD-A-3190 |  | Take Possession of Area 7.4 (SLG) (Shing Mun - Cheung Shan Estate Rd) | milestone | 0d | 2014-11-01 A | 2014-11-01 A | 822-KD-SS-1000 SS | 100% | 2015-01-01 | 2015-01-01 |  |  | start on or after 2014-08-04 | W11 7 day no hols | 01 | 822_AB_W11v4 |
|  | 3 | **Shek Yam** |  |  | 2015-06-07 | 2015-06-07 |  |  |  |  |  |  |  |  |  |  |
| 822-KD-A-3250 |  | Take 2nd Possession of Area 8.2 (Shek Yam) | milestone | 0d | 2015-06-07 A | 2015-06-07 A |  | 100% | 2015-07-01 | 2015-07-01 |  |  | start on or after 2015-06-07 | W11 7 day no hols | 01 | 822_AB_W11v4 |
|  | 5 | **Tai Shu Ha** |  |  |  |  |  |  |  |  |  |  |  |  |  |  |
|  | 6 | **So Kwan Wat** |  |  |  |  |  |  |  |  |  |  |  |  |  |  |
|  | 4 | **Kwai Fong** |  |  |  |  |  |  |  |  |  |  |  |  |  |  |
|  | 7 | **Yam O Barging Point** |  |  |  |  |  |  |  |  |  |  |  |  |  |  |
|  | 2 | **Works Area Vacate Dates** |  |  | 2014-12-29 | 2017-10-01 |  |  |  |  |  |  |  |  |  |  |
|  | 1 | **Pat Heung** |  |  | 2015-03-02 | 2017-08-18 |  |  |  |  |  |  |  |  |  |  |
| 822-KD-A-3320 |  | 1st Vacate Area 6.2 (Pat Heung) to C830 | milestone | 0d | 2015-03-02 A | 2015-03-02 A | 822-KD-DC-1220 | 100% | 2015-07-01 | 2015-07-01 |  |  |  | W11 7 day no hols | 01 | 822_AB_W11v4 |
| 822-KD-A-3290 |  | Vacate Area 6.4 (Kam Sheung Rd - by SLG) | milestone | 0d | 2017-08-18 | 2017-08-18 | 822-SE-PH-1000 FF |  |  |  | -827d | 0d |  | W11 7 day no hols | 01 |  |
| 822-KD-A-3380 |  | Vacate Area 6.1 (Pat Heung) | milestone | 0d | 2017-08-18 | 2017-08-18 | 822-SE-PH-1000 FF |  |  |  | -827d | 100d |  | W11 7 day no hols | 01 |  |
| 822-KD-A-3390 |  | 2nd Vacate Area 6.2 (Pat Heung) | milestone | 0d | 2017-08-18 | 2017-08-18 | 822-SE-PH-1000 FF, 822-KD-A-3260 SF |  |  |  | -827d | 100d |  | W11 7 day no hols | 01 |  |
| 822-KD-A-3400 |  | Vacate Area 6.3 (Pat Heung) | milestone | 0d | 2017-08-18 | 2017-08-18 | 822-SE-PH-1000 FF |  |  |  | -827d | 100d |  | W11 7 day no hols | 01 |  |
| 822-KD-A-4880 |  | Vacate Area 6.1A (Pat Heung) | milestone | 0d | 2017-08-18 | 2017-08-18 | 822-SE-PH-1000 FF, 822-KD-A-3290 FF |  |  |  | -827d | 100d |  | W11 7 day no hols | 01 |  |
|  | 2 | **Shing Mun** |  |  | 2015-09-24 | 2017-10-01 |  |  |  |  |  |  |  |  |  |  |
| 822-KD-A-3310 |  | Vacate Area 7.4 (Shing Mun - Cheung Shan Estate Rd) | milestone | 0d | 2015-09-24 A | 2015-09-24 A | 822-KD-A-3190 SF, 822-SM-VB5-EW-1120 | 100% | 2015-10-01 | 2015-10-01 |  |  |  | W11 7 day no hols | 01 | 822_AB_W11v4 |
| 822-KD-A-3420 |  | Vacate Area 7.1 (Shing Mun) | milestone | 0d | 2017-10-01 | 2017-10-01 | 822-KD-A-3310 FF, 822-SE-SM-1000 FF, 822-KD-A-4205 FF |  |  |  | -871d | 56d |  | W11 7 day no hols | 01 |  |
| 822-KD-A-3430 |  | Vacate Area 7.2 (Shing Mun) | milestone | 0d | 2017-10-01 | 2017-10-01 | 822-SE-SM-1000 FF |  |  |  | -871d | 56d |  | W11 7 day no hols | 01 |  |
| 822-KD-A-4205 |  | Vacate Area 7.3 (Part - Shing Mun Bus Terminus) | milestone | 0d | 2017-10-01 | 2017-10-01 | 822-SE-SM-1000 FF |  |  |  | -871d | 0d |  | W11 7 day no hols | 01 |  |

| ID | WBS | Activity | Type | Duration | Start | Finish | Predecessors | Complete | Planned start | Planned finish | Total float | Free float | Constraint | Calendar | Contract Key Dates | 822_AB_W11v4 |
| --- | --- | --- | --- | --- | --- | --- | --- | --- | --- | --- | --- | --- | --- | --- | --- | --- |
|  | 3 | **Shek Yam** |  |  | 2014-12-29 | 2017-03-22 |  |  |  |  |  |  |  |  |  |  |
| 822-KD-A-4890 |  | 1st Vacate Area 8.2 (Shek Yam) | milestone | 0d | 2014-12-29 A | 2014-12-29 A | 822-KD-DC-1240 | 100% | 2015-01-01 | 2015-01-01 |  |  |  | W11 7 day no hols | 01 | 822_AB_W11v4 |
| 822-KD-A-3370 |  | Vacate Area 8.1 (Shek Yam) | milestone | 0d | 2015-01-12 A | 2015-01-12 A |  | 100% | 2015-06-30 | 2015-06-30 |  |  | finish on 2015-06-30 | W11 7 day no hols | 01 | 822_AB_W11v4 |
| 822-KD-A-3440 |  | 2nd Vacate Area 8.2 (Shek Yam) | milestone | 0d | 2017-03-22 | 2017-03-22 | 822-SE-SY-1000 FF, 822-KD-A-3370 FF, 822-KD-A-3250 SF |  |  |  | -678d | 249d |  | W11 7 day no hols | 01 |  |
| 822-KD-A-3450 |  | Vacate Area 8.3 (Shek Yam) | milestone | 0d | 2017-03-22 | 2017-03-22 | 822-SE-SY-1000 FF |  |  |  | -678d | 249d |  | W11 7 day no hols | 01 |  |
|  | 6 | **So Kwan Wat** |  |  | 2017-03-26 | 2017-03-26 |  |  |  |  |  |  |  |  |  |  |
| 822-KD-A-3410 |  | Vacate Area 6.8 (So Kwan Wat) -EI 97 (Return Date extended to 30 Sep 15) | milestone | 0d | 2017-03-26 | 2017-03-26 | 822-SE-KW-1000 FF |  |  |  | -723d | 245d | finish on 2015-03-29 | W11 7 day no hols | 01 |  |
|  | 5 | **Tai Shu Ha** |  |  | 2017-01-02 | 2017-01-02 |  |  |  |  |  |  |  |  |  |  |
| 822-KD-A-3330 |  | Vacate Area 6.11 (Tai Shu Ha) - EI 92 (after 824 blasting or 30 Jun 15) | milestone | 0d | 2017-01-02 | 2017-01-02 | 822-SE-TSH-1000 FF |  |  |  | -731.88d | 328d | finish on 2014-12-28 | W11 7 day no hols | 01 |  |
| 822-KD-A-3340 |  | Vacate Area 6.12 (Tai Shu Ha) - EI 92 (after 824 blasting or 30 Jun 15) | milestone | 0d | 2017-01-02 | 2017-01-02 | 822-SE-TSH-1000 FF |  |  |  | -731.88d | 328d | finish on 2014-12-28 | W11 7 day no hols | 01 |  |
|  | 4 | **Kwai Fong** |  |  | 2017-10-01 | 2017-10-01 |  |  |  |  |  |  |  |  |  |  |
| 822-KD-A-3460 |  | Vacate Area 8.5 (Kwai Fong Compound) | milestone | 0d | 2017-10-01 | 2017-10-01 | 822-SE-KC-1000 FF |  |  |  | -871d | 56d |  | W11 7 day no hols | 01 |  |
|  | 7 | **Yam O Barging Point** |  |  | 2015-01-12 | 2015-01-12 |  |  |  |  |  |  |  |  |  |  |
| 822-KD-A-3350 |  | Vacate Area 6.13 (Yam O Barging Point) | milestone | 0d | 2015-01-12 A | 2015-01-12 A | 822-SE-YO-1000 FF, 822-SE-YO-1010 FF | 100% | 2015-01-28 | 2015-01-28 |  |  | finish on 2015-01-11 | W11 7 day no hols | 01 | 822_AB_W11v4 |
| 822-KD-A-3360 |  | Vacate Area 6.14 (Yam O Barging Point) | milestone | 0d | 2015-01-12 A | 2015-01-12 A | 822-SE-YO-1000 FF, 822-SE-YO-1010 FF | 100% | 2015-01-28 | 2015-01-28 |  |  | finish on 2015-01-11 | W11 7 day no hols | 01 | 822_AB_W11v4 |
|  | 6 | **Schedule Start From** |  |  | 2014-04-28 | 2014-04-28 |  |  |  |  |  |  |  |  |  |  |
| 822-KD-SS-1000 |  | W11 Schedule Start From Date | milestone | 0d | 2014-04-28 A | 2014-04-28 A |  | 100% |  |  |  |  | start on or after 2014-04-28 |  |  |  |
|  | 7 | **Planned Completion Dates** |  |  | 2014-08-16 | 2017-11-25 |  |  |  |  |  |  |  |  |  |  |
| 822-KD-P-1000 |  | Planned completion of Type A/B UT Tunnel | milestone | 0d | 2014-08-16 A | 2014-08-16 A | 822-MT-AUT-W-1000 FF, 822-MT-AUT-D-1020 FF, 822-MT-AB-R-1000 FF | 100% | 2014-09-01 | 2014-09-01 |  |  |  |  |  |  |
| 822-KD-P-1010 |  | Planned completion of Type A/B DT Tunnel | milestone | 0d | 2014-08-30 A | 2014-08-30 A | 822-MT-ADT-D-1010 FF, 822-MT-AB-R-1010 FF | 100% | 2014-09-01 | 2014-09-01 |  |  |  |  |  |  |
| 822-KD-P-1100 |  | Planned completion of SM2A2 Junction | milestone | 0d | 2014-11-27 A | 2014-11-27 A | 822-SM-2A2-JIS-1060 FF, 822-SM-2A2-1030 FF, 822-MT-2A2-JIS-1070 FF, 822-SM-2A2-TIS-1020 FF, 822-SM-2A2-T-1060 FF, 822-SM-2A2-JIS-1035 FF, 822-SM-2A2-TIS-1040 FF, 822-SM-2A2-TIS-1004 FF | 100% | 2015-01-17 | 2015-01-17 |  |  |  |  |  |  |
| 822-KD-P-1130 |  | Planned completion of Type P Nozzle | milestone | 0d | 2014-11-28 A | 2014-11-28 A | 822-SY-P-1290 FF, 822-SY-P-1300 FF, 822-SY-P-1150, 822-SY-P-1160, 822-SY-P-1170, 822-SY-P-1180, 822-SY-P-1190 FF, 822-SY-P-1200 FF, 822-SY-P-1210 FF, 822-SY-P-1280 FF, 822-SY-P-1220 FF | 100% | 2015-01-16 | 2015-01-16 |  |  |  |  |  |  |
| 822-KD-P-1050 |  | Planned completion of Type C (N) Tunnel | milestone | 0d | 2014-12-05 A | 2014-12-05 A | 822-MT-CN-L-1010 FF, 822-MT-CN-EW-1090 FF, 822-MT-CN-EW-1100 FF, 822-MT-CN-DK-1440 FF, 822-MT-CN-R-1000 FF, 822-MT-CN-R-1010 FF, 822-MT-CN-CW-1150 FF, 822-MT-CN-EW-1210 FF, 822-MT-CN-EW-1220 FF | 100% | 2014-12-27 | 2014-12-27 |  |  |  |  |  |  |
| 822-KD-P-1060 |  | Planned completion of Type M (S) Tunnel | milestone | 0d | 2014-12-05 A | 2014-12-05 A | 822-MT-MS-OS-1010 FF, 822-MT-MS-OW-1010 FF, 822-MT-MS-OW-1030 FF, 822-MT-MS-OW-1040 FF, 822-MT-MS-EW-1030 FF, 822-MT-MS-DK-1000 FF, 822-MT-MS-DK-1010 FF, 822-MT-MS-DK-1020 FF, 822-MT-MS-DK-1030 FF, 822-MT-MS-DK-1040 FF, 822-MT-MS-DK-1050 FF, 822-MT-MS-R-1000 FF, 822-MT-MS-EW-1020 FF, 822-MT-MS-EW-1090 FF, 822-MT-MS-EW-1070 FF, 822-MT-MS-EW-1060 FF, 822-MT-MS-CW-1030 FF, 822-MT-MS-OW-1050 FF | 100% | 2015-01-09 | 2015-01-09 |  |  |  |  |  |  |
| 822-KD-P-1070 |  | Planned completion of Type C (S) Tunnel | milestone | 0d | 2014-12-06 A | 2014-12-06 A | 822-MT-CS-EW-1030 FF, 822-MT-CS-DK-1010 FF, 822-MT-CS-DK-1030 FF, 822-MT-CS-R-1000 FF, 822-MT-CS-DK-1060 FF, 822-MT-CS-DK-1070 FF | 100% | 2015-01-22 | 2015-01-22 |  |  |  |  |  |  |
| 822-KD-P-1120 |  | Planned completion of Type E (South) Nozzle | milestone | 0d | 2014-12-20 A | 2014-12-20 A | 822-PH-E-S-1080 FF, 822-PH-E-S-1120 FF | 100% | 2015-01-02 | 2015-01-02 |  |  |  |  |  |  |
| 822-KD-P-1175 |  | Planned completion of EAP Adit | milestone | 0d | 2014-12-22 A | 2014-12-22 A | 822-SM-EAP-IS-1080 FF, 822-SM-EAP-FW-1000 FF | 100% | 2015-01-02 | 2015-01-02 |  |  |  |  |  |  |
| 822-KD-P-1160 |  | Planned completion of SY Construction Adits | milestone | 0d | 2015-01-10 A | 2015-01-10 A | 822-SY-AA-1000 FF | 100% | 2015-01-19 | 2015-01-19 |  |  |  |  |  |  |
| 822-KD-P-1110 |  | Planned completion of Type E (North) Nozzle | milestone | 0d | 2015-01-19 A | 2015-01-19 A | 822-PH-E-N-1110 FF, 822-PH-E-N-1150 FF | 100% |  |  |  |  |  |  |  |  |
| 822-KD-P-1090 |  | Planned completion of PH2A2 Junction | milestone | 0d | 2015-01-21 A | 2015-01-21 A | 822-PH-2A2-1630 FF, 822-PH-2A2-1330 FF, 822-PH-2A2-1770 FF, 822-PH-2A2-1800 FF | 100% | 2015-02-02 | 2015-02-02 |  |  |  |  |  |  |
| 822-KD-P-1020 |  | Planned completion of Type G Tunnel (except closure at VAA) | milestone | 0d | 2015-02-28 A | 2015-02-28 A | 822-MT-G-L-1060 FF, 822-MT-G-CW-1094 FF, 822-MT-G-CW-1020 FF, 822-MT-G-W-1000 FF, 822-MT-G-W-1010 FF, 822-MT-G-W-1020 FF, 822-MT-G-W-1030 FF, 822-MT-G-D-1000 FF, 822-MT-G-D-1010 FF, 822-MT-G-D-1020 FF, 822-MT-G-D-1030 FF, 822-MT-G-D-1060 FF, 822-MT-G-D-1070 FF, 822-MT-G-D-1040 FF, 822-MT-G-D-1050 FF, 822-MT-G-R-1000 FF, 822-MT-G-D-1100 FF, 822-MT-G-D-1110 FF | 100% | 2015-03-05 | 2015-03-05 |  |  |  |  |  |  |
| 822-KD-P-1030 |  | Planned completion of Type F Tunnel | milestone | 0d | 2015-02-28 A | 2015-02-28 A | 822-MT-F-EW-1030 FF, 822-MT-F-CW-1010 FF, 822-MT-F-R-1000 FF, 822-MT-F-OW-1020 FF, 822-MT-F-D-1050 FF, 822-MT-F-CW-1020 | 100% | 2015-03-06 | 2015-03-06 |  |  |  |  |  |  |
| 822-KD-P-1040 |  | Planned completion of Type M (N) Tunnel | milestone | 0d | 2015-02-28 A | 2015-02-28 A | 822-MT-MN-I-1000 FF, 822-MT-MN-CW-1030 FF, 822-MT-MN-EW-1000 FF, 822-MT-MN-EW-1010 FF, 822-MT-MN-D-1000 FF, 822-MT-MN-D-1050 FF, 822-MT-MN-R-1000 FF, 822-MT-MN-R-1020 FF, 822-MT-MN-OW-1015 FF, 822-MT-MN-D-1030 FF | 100% | 2015-03-06 | 2015-03-06 |  |  |  |  |  |  |
| 822-KD-P-1200 |  | Planned closure of Main Tunnel lining at VAA Junction | milestone | 0d | 2015-02-28 A | 2015-02-28 A | 822-MT-G-C-1030 FF, 822-MT-G-C-1020 FF, 822-MT-G-C-1000 FF, 822-MT-CO-1010 FF | 100% | 2015-03-16 | 2015-03-16 |  |  |  |  |  |  |
| 822-KD-P-1140 |  | Planned completion of PHVA | milestone | 0d | 2015-04-09 A | 2015-04-09 A | 822-PH-VA-CW-1010 FF, 822-PH-VA-KL-1250 FF, 822-PH-VA-CW-1060 FF, 822-PH-VA-CW-1050 FF, 822-PH-VA-CW-1070 FF, 822-PH-VA-TCA1-1000 FF, 822-PH-VA-TCA1-1020 FF, 822-PH-VA-LL2-1050 FF, 822-PH-VA-CW-1090 FF, 822-PH-VA-FW-1000 FF | 100% | 2015-04-20 | 2015-04-20 |  |  |  |  |  |  |
| 822-KD-P-1080 |  | Planned completion of PH1 Junction | milestone | 0d | 2015-04-30 A | 2015-04-30 A | 822-PH-1-1470 FF, 822-PH-1-1190 FF, 822-PH-1-1260 FF, 822-PH-1-1380 FF, 822-PH-1-1420 FF, 822-PH-1-1250, 822-PH-1-1050 FF, 822-PH-1-1370 FF | 100% | 2015-05-13 | 2015-05-13 |  |  |  |  |  |  |
| 822-KD-P-1180 |  | Planned completion of SM Shaft | milestone | 0d | 2015-05-28 A | 2015-05-28 A | 822-SM-S-FW-1000 FF, 822-SM-S-L5-1030 FF, 822-SM-S-L4-1050 FF, 822-SM-S-L4-1030 FF | 100% | 2015-06-01 | 2015-06-01 |  |  |  |  |  |  |
| 822-KD-P-1155 |  | Planned completion of Link Structure | milestone | 0d | 2015-06-13 A | 2015-06-13 A | 822-PH-VB4-LS-1220 FF | 100% | 2015-09-01 | 2015-09-01 |  |  |  |  |  |  |
| 822-KD-P-2010 |  | Planned closure of Main Tunnel lining at SY Construction Adit Junction | milestone | 0d | 2017-01-24 | 2017-01-24 | 822-MT-CS-C-1080 FF |  |  |  | -576.12d | 0d |  |  |  |  |
| 822-KD-P-1150 |  | Planned completion of PHVAA | milestone | 0d | 2017-01-28 | 2017-01-28 | 822-PH-VAA-TP-1080 FF, 822-KD-P-1080 FF, 822-PH-VAA-IS-1095 FF, 822-KD-P-1155 FF, 822-PH-VAA-IS-1100 FF |  |  |  | -1086d | 0d |  |  |  |  |
| 822-KD-P-1190 |  | Planned completion of VB5 (internal works) | milestone | 0d | 2017-02-09 | 2017-02-09 | 822-SM-VB5-FW-1140 FF, 822-SM-VB5-RC-1020 FF |  |  |  | -1096d | 0d |  |  |  |  |
| 822-KD-P-1170 |  | Planned completion of VB4 (external works) | milestone | 0d | 2017-06-22 | 2017-06-22 | 822-PH-VB4-EW-1230 FF, 822-PH-VB4-EW-1020 FF, 822-PH-VB4-EW-1070 FF, 822-PH-VB4-EW-1190 FF, 822-PH-VB4-EW-1220 FF, 822-PH-VB4-EW-1160 FF, 822-PH-VB4-EW-1150 FF, 822-PH-VB4-EW-1100 FF |  |  |  | -756d | 0d |  |  |  |  |
| 822-KD-P-1195 |  | Planned completion of VB5 (external works) | milestone | 0d | 2017-09-02 | 2017-09-02 | 822-SM-VB5-EW-1070 FF, 822-SM-VB5-EW-1230 FF, 822-SM-VB5-EW-1110 FF, 822-SM-VB5-EW-1170 FF, 822-SM-VB5-EW-1160 FF |  |  |  | -790d | 0d |  |  |  |  |
| 822-KD-P-2000 |  | Planned Completion of the Whole of the Works | milestone | 0d | 2017-11-25 | 2017-11-25 | 822-SE-KC-1000 FF, 822-SE-SM-1000 FF, 822-SE-PH-1000 FF, 822-SE-SY-1000 FF, 822-SE-YO-1000 FF, 822-SE-TSH-1000 FF, 822-SE-KW-1000 FF, 822-D-QR-1040 FF, 822-D-AB-1090 FF, 822-D-OM-1030 FF, 822-MT-CS-C-1080 FF, 822-KD-A-3380 FF, 822-KD-A-3390 FF, 822-KD-A-3400 FF, 822-KD-A-4880 FF, 822-KD-A-3310 FF, 822-KD-A-3420 FF, 822-KD-A-3430 FF, 822-KD-A-3440 FF, 822-KD-A-3450 FF, 822-KD-A-3410 FF, 822-KD-A-3330 FF, 822-KD-A-3340 FF, 822-KD-A-3460 FF, 822-KD-A-3350 FF, 822-KD-A-3360 FF, 822-SE-YO-1010 FF |  |  |  | -790d | 0d |  |  |  |  |

| ID | WBS | Activity | Duration | Start | Finish | Predecessors | Complete | Remaining | Planned start | Planned finish | Total float | Free float | Constraint | 822_AB_W11v4 |
| --- | --- | --- | --- | --- | --- | --- | --- | --- | --- | --- | --- | --- | --- | --- |
|  | 2 | **Deliverables** |  | 2015-06-01 | 2017-11-25 |  |  |  |  |  |  |  |  |  |
|  | 1 | **Quality Records** |  | 2015-09-01 | 2017-11-11 |  |  |  |  |  |  |  |  |  |
| 822-D-QR-1000 |  | Collate and submit quality records for Main Tunnel Works | 48d | 2015-09-01 A | 2017-01-27 | 822-KD-P-1000, 822-KD-P-1010, 822-KD-P-1020, 822-KD-P-1030, 822-KD-P-1040, 822-KD-P-1050, 822-KD-P-1060, 822-KD-P-1070, 822-KD-P-1090, 822-KD-P-1100, 822-KD-P-1110, 822-KD-P-1120, 822-KD-P-1130, 822-KD-P-1200 |  | 23d | 2015-09-01 | 2015-10-29 | -579d | 199d |  |  |
| 822-D-QR-1030 |  | Collate and submit quality records for SY Construction Adit | 48d | 2015-09-01 A | 2017-01-27 | 822-KD-P-1160 |  | 23d | 2015-09-01 | 2015-10-29 | -579d | 199d |  |  |
| 822-D-QR-1020 |  | Collate and submit quality records for VB4 + PHVA + PHVAA | 48d | 2017-05-26 | 2017-07-20 | 822-KD-P-1170 FS-24d, 822-KD-P-1140 FS-24d, 822-KD-P-1150 FS-24d, 822-KD-P-1155 |  |  |  |  | -692d | 86d |  |  |
| 822-D-QR-1010 |  | Collate and submit quality records for SM Shaft and VB5 | 48d | 2017-09-04 | 2017-10-28 | 822-KD-P-1180 FS-24d, 822-KD-P-1190 FS-24d, 822-KD-P-1195 |  |  |  |  | -778d | 0d |  |  |
| 822-D-QR-1040 |  | MTR acceptance of quality records | 48d | 2017-09-18 | 2017-11-11 | 822-D-QR-1030, 822-D-QR-1020 FS-36d, 822-D-QR-1010 FS-36d, 822-D-QR-1000 |  |  |  |  | -778d | 12d |  |  |
|  | 2 | **As-Built Drawings** |  | 2015-06-01 | 2017-11-25 |  |  |  |  |  |  |  |  |  |
| 822-D-AB-1050 |  | Prepare and submit as-built drawings for EAP & SM Shaft | 48d | 2015-06-01 A | 2017-01-28 | 822-KD-P-1180 FS-24d, 822-KD-P-1175 |  | 24d | 2015-06-01 | 2015-07-28 | -580d | 210d |  |  |
| 822-D-AB-1000 |  | Prepare and submit as-built drawings for Main Tunnel | 48d | 2015-07-01 A | 2015-08-31 A | 822-KD-P-1000, 822-KD-P-1010, 822-KD-P-1020, 822-KD-P-1030, 822-KD-P-1040, 822-KD-P-1050, 822-KD-P-1060, 822-KD-P-1070, 822-KD-P-1090, 822-KD-P-1100, 822-KD-P-1110, 822-KD-P-1120, 822-KD-P-1130, 822-KD-P-1200 FS-24d | 100% |  | 2015-09-01 | 2015-10-29 |  |  |  |  |
| 822-D-AB-1010 |  | Prepare and submit as-built drawings for PHVA | 48d | 2015-09-01 A | 2017-01-27 | 822-KD-P-1140 FS-24d |  | 23d | 2015-09-01 | 2015-10-29 | -579d | 25d |  |  |
| 822-D-AB-1030 |  | Prepare and submit as-built drawings for SY Construction Adit | 24d | 2015-09-01 A | 2015-10-26 A | 822-KD-P-1160 | 100% |  | 2015-09-01 | 2015-09-29 |  |  |  |  |
| 822-D-AB-1020 |  | Prepare and submit as-built drawings for PHVAA | 48d | 2015-09-09 A | 2017-01-27 | 822-KD-P-1150 FS-24d, 822-KD-P-1155 |  | 23d | 2015-09-09 | 2015-11-06 | -555d | 25d |  |  |
| 822-D-AB-1060 |  | Prepare and submit as-built drawings for VB5 | 48d | 2017-01-12 | 2017-03-09 | 822-KD-P-1190 FS-24d |  |  |  |  | -589.88d | 200.12d |  |  |
| 822-D-AB-1040 |  | Prepare and submit as-built drawings for VB4 | 48d | 2017-05-26 | 2017-07-20 | 822-KD-P-1170 FS-24d |  |  |  |  | -728d | 62d |  |  |
| 822-D-AB-1070 |  | Prepare and submit as-built drawings for VB4 landscaping | 48d | 2017-05-26 | 2017-07-20 | 822-KD-P-1170 FS-24d |  |  |  |  | -728d | 62d |  |  |
| 822-D-AB-1080 |  | Prepare and submit as-built drawings for VB5 landscaping | 48d | 2017-09-04 | 2017-10-28 | 822-KD-P-1195 |  |  |  |  | -790d | 0d |  |  |
| 822-D-AB-1090 |  | MTR acceptance of as-built drawings | 48d | 2017-10-02 | 2017-11-25 | 822-D-AB-1000, 822-D-AB-1010, 822-D-AB-1020 FS-24d, 822-D-AB-1030, 822-D-AB-1040, 822-D-AB-1050, 822-D-AB-1060 FS-24d, 822-D-AB-1070, 822-D-AB-1080 FS-24d |  |  |  |  | -790d | 0d |  |  |
|  | 3 | **O&M Manuals** |  | 2015-09-01 | 2017-05-20 |  |  |  |  |  |  |  |  |  |
| 822-D-OM-1000 |  | Prepare and submit draft O&M Manuals | 90d | 2015-09-01 A | 2015-11-11 A | 822-KD-P-1090 | 100% |  | 2015-10-31 | 2016-02-16 |  |  |  |  |
| 822-D-OM-1010 |  | MTR review and comment | 48d | 2017-01-02 | 2017-02-25 | 822-D-OM-1000 |  |  |  |  | -628d | 0d |  |  |
| 822-D-OM-1020 |  | Incorporate comments and submit O&M Manuals | 24d | 2017-02-27 | 2017-03-25 | 822-D-OM-1010 |  |  |  |  | -628d | 0d |  |  |
| 822-D-OM-1030 |  | MTR approval of O&M Manuals | 48d | 2017-03-27 | 2017-05-20 | 822-D-OM-1020 |  |  |  |  | -628d | 162d |  |  |
|  | 3 | **Site Establishment** |  | 2014-11-13 | 2017-09-30 |  |  |  |  |  |  |  |  |  |
|  | 7 | **Yam O Barging Point** |  | 2014-11-13 | 2015-01-12 |  |  |  |  |  |  |  |  |  |
| 822-SE-YO-1000 |  | Clear and reinstate Yam O Barging Point site Phase 1 | 14d | 2014-11-13 A | 2014-11-28 A | 822-KD-P-1050 | 100% |  | 2014-12-15 | 2015-01-02 |  |  | as late as possible | 822_AB_W11v4 |
| 822-SE-YO-1010 |  | Clear and reinstate Yam O Barging Point Site Phase 2 | 26d | 2014-12-29 A | 2015-01-12 A | 822-SE-YO-1000 FS+26d | 100% |  | 2015-01-02 | 2015-01-31 |  |  |  | 822_AB_W11v4 |

| ID | WBS | Activity | Duration | Start | Finish | Predecessors | Complete | Planned start | Planned finish | Total float | Free float | Constraint | 822_AB_W11v4 | TimeChainage |
| --- | --- | --- | --- | --- | --- | --- | --- | --- | --- | --- | --- | --- | --- | --- |
|  | 4 | **Tai Shu Ha Magazine** |  | 2015-11-20 | 2015-11-27 |  |  |  |  |  |  |  |  |  |
| 822-SE-TSH-1000 |  | Clear and reinstate Tai Shu Ha Magaziine site - EI 92 (after 824 blasting or 30 Jun 15) | 72d | 2015-11-20 A | 2015-11-27 A | 822-KD-P-1050 | 100% | 2015-10-31 | 2016-01-26 |  |  | as late as possible | 822_AB_W11v4 |  |
|  | 5 | **So Kwan Wat Magazine** |  | 2017-01-02 | 2017-03-25 |  |  |  |  |  |  |  |  |  |
| 822-SE-KW-1000 |  | Clear and reinstate So Kwan Wat Magazine site - EI 97 (Return Date extended to 30 Sep 15) | 72d | 2017-01-02 | 2017-03-25 | 822-KD-P-1050 |  |  |  | -614d | 0d | start on or after 2015-07-08 |  |  |
|  | 3 | **Shek Yam Site** |  | 2017-01-25 | 2017-03-21 |  |  |  |  |  |  |  |  |  |
| 822-SE-SY-1000 |  | Clear and reinstate Shek Yam site | 48d | 2017-01-25 | 2017-03-21 | 822-SY-AA-1000, 822-KD-P-1180, 822-KD-P-1130, 822-KD-P-1060, 822-KD-P-1100, 822-KD-P-1160, 822-KD-P-1070, 822-KD-P-2010 |  |  |  | -576.12d | 0d |  |  |  |
|  | 2 | **Pat Heung Site** |  | 2017-06-23 | 2017-08-17 |  |  |  |  |  |  |  |  |  |
| 822-SE-PH-1000 |  | Clear and reinstate Pat Heung site | 48d | 2017-06-23 | 2017-08-17 | 822-KD-P-1170, 822-KD-P-1000, 822-KD-P-1030, 822-KD-P-1010, 822-KD-P-1040, 822-KD-P-1050, 822-KD-P-1020, 822-KD-P-1110, 822-KD-P-1120, 822-KD-P-1140, 822-KD-P-1150, 822-KD-P-1080, 822-KD-P-1090, 822-KD-P-1200, 822-KD-P-1155 |  |  |  | -704.12d | 0d |  |  |  |
|  | 6 | **Shing Mun Site** |  | 2017-09-04 | 2017-09-30 |  |  |  |  |  |  |  |  |  |
| 822-SE-SM-1000 |  | Clear and reinstate Shing Mun site | 24d | 2017-09-04 | 2017-09-30 | 822-KD-P-1190, 822-KD-P-1195 |  |  |  | -742.12d | 0d |  |  |  |
|  | 1 | **Kwai Chung Office Site** |  | 2017-08-07 | 2017-09-30 |  |  |  |  |  |  |  |  |  |
| 822-SE-KC-1000 |  | Clear and reinstate Kwai Chung Office site | 48d | 2017-08-07 | 2017-09-30 | 822-KD-P-1170 FS-24d, 822-KD-P-1190 FS-24d, 822-KD-P-1195 FS-24d |  |  |  | -742.12d | 0d |  |  |  |
|  | 4 | **Main Tunnel** |  | 2014-03-17 | 2017-01-24 |  |  |  |  |  |  |  |  |  |
|  | 1 | **Type A/B Profile** |  | 2014-04-14 | 2014-08-30 |  |  |  |  |  |  |  |  |  |
|  | 1 | **UT Evacuation Walkway** |  | 2014-04-14 | 2014-05-22 |  |  |  |  |  |  |  |  |  |
| 822-MT-AUT-W-1000 |  | Walkway chg 125484-125635 | 33d | 2014-04-14 A | 2014-05-22 A | 822-MT-G-L-1005 SS+6d | 100% |  |  |  |  |  |  | 01 |
|  | 2 | **UT Side Walkway & Derailment Kerb** |  | 2014-07-03 | 2014-07-16 |  |  |  |  |  |  |  |  |  |
| 822-MT-AUT-D-1010 |  | Derailment kerb chg 125379-125635 | 10d | 2014-07-03 A | 2014-07-16 A | 822-MT-AUT-W-1000, 822-MT-CN-DK-1060 FS-1d | 100% | 2014-07-03 | 2014-07-14 |  |  |  | 822_AB_W11v4 | 01 |
| 822-MT-AUT-D-1020 |  | Side walkway chg 125379-125635 | 10d | 2014-07-04 A | 2014-07-14 A | 822-MT-AUT-D-1010 SS+6d | 100% | 2014-10-21 | 2014-10-31 |  |  |  | 822_AB_W11v4 | 01 |
|  | 3 | **DT Side Walkway & Derailment Kerb** |  | 2014-06-04 | 2014-06-30 |  |  |  |  |  |  |  |  |  |
| 822-MT-ADT-D-1000 |  | Derailment kerb chg 125385-125620 | 10d | 2014-06-04 A | 2014-06-30 A | 822-MT-AUT-D-1020 | 100% | 2014-11-01 | 2014-11-12 |  |  |  | 822_AB_W11v4 | 01 |
| 822-MT-ADT-D-1010 |  | Side walkway chg 125385-125620 | 10d | 2014-06-04 A | 2014-06-27 A | 822-MT-ADT-D-1000 SS+6d | 100% | 2014-11-08 | 2014-11-19 |  |  |  | 822_AB_W11v4 | 01 |
|  | 4 | **Remedial works** |  | 2014-06-20 | 2014-08-30 |  |  |  |  |  |  |  |  |  |
| 822-MT-AB-R-1000 |  | Remedial works in A/B Profile UT | 12d | 2014-06-20 A | 2014-08-16 A | 822-MT-AUT-D-1020 FS-6d | 100% | 2014-10-25 | 2014-11-07 |  |  |  | 822_AB_W11v4 | 01 |
| 822-MT-AB-R-1010 |  | Remedial works in A/B Profile DT | 12d | 2014-07-07 A | 2014-08-30 A | 822-MT-ADT-D-1010 FS-6d | 100% | 2014-11-13 | 2014-11-26 |  |  |  | 822_AB_W11v4 | 01 |

| ID | WBS | Activity | Duration | Start | Finish | Predecessors | Complete | Planned start | Planned finish | TimeChainage | Task Type | 822_AB_W11v4 |
| --- | --- | --- | --- | --- | --- | --- | --- | --- | --- | --- | --- | --- |
|  | 2 | **Type G Profile** |  | 2014-04-28 | 2015-03-06 |  |  |  |  |  |  |  |
|  | 1 | **Lining** |  | 2014-04-28 | 2014-09-11 |  |  |  |  |  |  |  |
| 822-MT-G-L-1000 |  | Modify G shutter | 7d | 2014-04-28 A | 2014-05-07 A | 822-KD-SS-1000 | 100% | 2014-09-01 | 2014-09-08 |  |  |  |
| 822-MT-G-L-1005 |  | Arch lining GC06-01 chg 125747-125807 | 14d | 2014-05-08 A | 2014-05-23 A | 822-MT-G-L-1000 | 100% | 2014-09-10 | 2014-09-25 | 01 |  |  |
| 822-MT-G-L-1010 |  | Wall lining chg 125842-125819 | 12d | 2014-05-13 A | 2014-05-29 A | 822-MT-G-L-1005 SS+4d | 100% | 2014-09-15 | 2014-09-27 | 01 |  |  |
| 822-MT-G-L-1020 |  | Modify G shutter | 13d | 2014-05-24 A | 2014-06-08 A | 822-MT-G-L-1005 | 100% | 2014-09-26 | 2014-10-13 | 01 | (New) | 822_AB_W11v4 |
| 822-MT-G-L-1015 |  | Dismantle G wall lining shutter | 23d | 2014-05-30 A | 2014-06-28 A | 822-MT-G-L-1010 FS+6d | 100% | 2014-10-08 | 2014-11-03 | 01 |  | 822_AB_W11v4 |
| 822-MT-G-L-1030 |  | Arch lining GB12-01 chg 125807-125942 | 26d | 2014-06-09 A | 2014-07-14 A | 822-MT-G-L-1020, 822-MT-G-L-1010 | 100% | 2014-10-14 | 2014-11-12 | 01 |  | 822_AB_W11v4 |
| 822-MT-G-L-1040 |  | Modify G shutter | 18d | 2014-07-15 A | 2014-07-30 A | 822-MT-G-L-1030 | 100% | 2014-09-01 | 2014-09-22 | 01 | (New) | 822_AB_W11v4 |
| 822-MT-G-L-1050 |  | Arch lining GA09-01 chg 125942-126043 | 20d | 2014-07-31 A | 2014-08-18 A | 822-MT-G-L-1040 | 100% | 2014-09-23 | 2014-10-17 | 01 |  | 822_AB_W11v4 |
| 822-MT-G-L-1060 |  | Dismantle G arch lining shutter | 22d | 2014-09-04 A | 2014-09-11 A | 822-MT-G-L-1050 | 100% | 2014-10-03 | 2014-10-28 | 01 | (New) | 822_AB_W11v4 |
|  | 2 | **Centre Wall** |  | 2014-04-28 | 2014-11-22 |  |  |  |  |  |  |  |
| 822-MT-G-CW-1005 |  | Assemble G centre wall shutter & advance works | 40d | 2014-04-28 A | 2014-06-15 A | 822-KD-SS-1000 SS | 100% | 2014-09-01 | 2014-10-20 | 01 | (New) | 822_AB_W11v4 |
| 822-MT-G-CW-1010 |  | Centre walls UT GE04-06 chg 125650-125619 | 18d | 2014-06-16 A | 2014-09-08 A | 822-MT-G-CW-1005 | 100% | 2014-10-21 | 2014-11-10 | 01 |  | 822_AB_W11v4 |
| 822-MT-G-CW-1020 |  | Centre wall GE02-01 chg 125662-125686 | 5d | 2014-06-28 A | 2014-07-22 A | 822-MT-G-CW-1010 | 100% | 2014-11-11 | 2014-11-15 | 01 |  | 822_AB_W11v4 |
| 822-MT-G-CW-1025 |  | Centre wall GD05-01 chg 125686-125746 | 13d | 2014-07-05 A | 2014-08-13 A | 822-MT-G-CW-1020 | 100% | 2014-11-17 | 2014-12-01 | 01 |  | 822_AB_W11v4 |
| 822-MT-G-CW-1070 |  | Centre wall GC06-04 chg 125746-125779 | 6d | 2014-07-16 A | 2014-07-24 A | 822-MT-G-CW-1025 | 100% | 2014-12-02 | 2014-12-08 | 01 |  | 822_AB_W11v4 |
| 822-MT-G-CW-1080 |  | Centre wall GB01-12 chg 125942-125806 | 12d | 2014-08-02 A | 2014-09-05 A | 822-MT-G-CW-1070 | 100% | 2014-12-09 | 2014-12-22 | 01 |  | 822_AB_W11v4 |
| 822-MT-G-CW-1012 |  | Centre wall DT GE03-06 chg 125662-125619 Lower pour | 22d | 2014-08-06 A | 2014-10-14 A | 822-MT-G-CW-1005, 822-MT-G-CW-1010 FS-3d | 100% | 2014-11-07 | 2014-12-02 | 01 |  | 822_AB_W11v4 |
| 822-MT-G-CW-1035 |  | Centre wall DT GE03-06 chg 125662-125619 Upper pour | 23d | 2014-08-16 A | 2014-11-18 A | 822-MT-G-CW-1012 | 100% | 2014-12-03 | 2014-12-31 | 01 |  | 822_AB_W11v4 |
| 822-MT-G-CW-1090 |  | Centre wall GA09-01 chg 125942-126043 | 10d | 2014-10-09 A | 2014-11-08 A | 822-MT-G-CW-1080, 822-MT-G-L-1050 | 100% | 2014-11-01 | 2014-11-12 | 01 |  | 822_AB_W11v4 |
| 822-MT-G-CW-1094 |  | Dismantle G wall shutter | 12d | 2014-11-10 A | 2014-11-22 A | 822-MT-G-CW-1090 | 100% | 2014-12-20 | 2015-01-06 | 01 | (New) | 822_AB_W11v4 |
|  | 3 | **Evacuation Walkways** |  | 2014-07-31 | 2014-12-10 |  |  |  |  |  |  |  |
| 822-MT-G-W-1020 |  | Walkway UT chg 125619-125660 (GE06 to GE03) | 3d | 2014-07-31 A | 2014-11-04 A | 822-MT-G-CW-1010 | 100% | 2014-09-02 | 2014-09-04 | 01 |  | 822_AB_W11v4 |
| 822-MT-G-W-1000 |  | Walkway UT chg 125660-125780 (GE02 to GC04) | 10d | 2014-09-01 A | 2014-12-03 A | 822-MT-G-CW-1020, 822-MT-G-CW-1070 SS+8d | 100% | 2014-10-03 | 2014-10-14 | 01 |  | 822_AB_W11v4 |
| 822-MT-G-W-1040 |  | Walkway UT chg 125806-126043 (GB12 to GA01) | 16d | 2014-10-07 A | 2014-11-14 A | 822-MT-G-CW-1090 FS-6d, 822-MT-G-W-1000 | 100% | 2014-11-04 | 2014-11-21 | 01 |  | 822_AB_W11v4 |
| 822-MT-G-W-1050 |  | Walkway DT chg 125806-126043 (GB12 to GA01) | 16d | 2014-10-07 A | 2014-12-10 A | 822-MT-G-W-1040 SS+2d, 822-MT-G-W-1010, 822-MT-G-CW-1090 FS-6d | 100% | 2014-11-13 | 2014-12-01 | 01 |  | 822_AB_W11v4 |
| 822-MT-G-W-1010 |  | Walkway DT chg 125660-125780 (GE02 to GC04) | 10d | 2014-10-23 A | 2014-12-09 A | 822-MT-G-W-1000 SS+2d | 100% | 2014-11-01 | 2014-11-12 | 01 |  | 822_AB_W11v4 |
| 822-MT-G-W-1030 |  | Walkway DT chg 125619-125660 (GE06 to GE03) | 7d | 2014-12-06 A | 2014-12-09 A | 822-MT-G-W-1020 SS+2d, 822-MT-G-CW-1035 | 100% | 2014-12-24 | 2015-01-03 | 01 |  | 822_AB_W11v4 |

| ID | WBS | Activity | Duration | Start | Finish | Predecessors | Complete | Planned start | Planned finish | Constraint | Calendar | TimeChainage | 822_AB_W11v4 |
| --- | --- | --- | --- | --- | --- | --- | --- | --- | --- | --- | --- | --- | --- |
|  | 4 | **Derailment Kerbs** |  | 2014-11-18 | 2014-12-16 |  |  |  |  |  |  |  |  |
| 822-MT-G-D-1000 |  | Derailment kerb UT chg 125660-125780 (GE02 to GC04) | 38d | 2014-11-18 A | 2014-12-06 A | 822-MT-G-W-1000 SS+4d | 100% | 2014-12-15 | 2015-01-30 |  |  | 01 | 822_AB_W11v4 |
| 822-MT-G-D-1040 |  | Derailment kerb UT chg 125619-125660 (GE06 to GE03) | 38d | 2014-11-18 A | 2014-11-19 A | 822-MT-G-W-1020 SS+4d | 100% | 2014-12-15 | 2015-01-30 |  |  | 01 | 822_AB_W11v4 |
| 822-MT-G-D-1080 |  | Derailment kerb UT chg 125806-126043 (GB12 to GA01) | 4d | 2014-11-24 A | 2014-11-26 A | 822-MT-G-W-1050 SS+2d, 822-MT-G-D-1000 | 100% | 2014-12-15 | 2014-12-18 |  |  | 01 | 822_AB_W11v4 |
| 822-MT-G-D-1010 |  | Derailment kerb DT chg 125660-125780 (GE02 to GC04) | 38d | 2014-11-27 A | 2014-12-12 A | 822-MT-G-W-1010 SS+4d | 100% | 2014-12-15 | 2015-01-30 |  |  | 01 | 822_AB_W11v4 |
| 822-MT-G-D-1090 |  | Derailment kerb DT chg 125806-126043 (GB12 to GA01) | 3d | 2014-11-28 A | 2014-12-16 A | 822-MT-G-D-1080 SS+3d, 822-MT-G-D-1010 | 100% | 2014-12-24 | 2014-12-29 |  |  | 01 | 822_AB_W11v4 |
| 822-MT-G-D-1050 |  | Derailment kerb DT chg 125619-125660 (GE06 to GE03) | 26d | 2014-12-11 A | 2014-12-12 A | 822-MT-G-W-1030 SS+4d | 100% | 2014-12-15 | 2015-01-16 |  |  | 01 | 822_AB_W11v4 |
|  | 6 | **Side Access Walkways** |  | 2014-07-12 | 2014-12-16 |  |  |  |  |  |  |  |  |
| 822-MT-G-D-1060 |  | Side walkway UT chg 125619-125660 (GE06 to GE03) | 3d | 2014-07-12 A | 2014-07-14 A | 822-MT-G-D-1040 SS+4d | 100% | 2014-09-12 | 2014-09-15 |  |  | 01 | 822_AB_W11v4 |
| 822-MT-G-D-1020 |  | Side walkway UT chg 125660-125780 (GE02 to GC04) | 10d | 2014-07-14 A | 2014-11-20 A | 822-MT-G-D-1000 SS+4d | 100% | 2014-09-12 | 2014-09-23 |  |  | 01 | 822_AB_W11v4 |
| 822-MT-G-D-1070 |  | Side walkway DT chg 125619-125660 (GE06 to GE03) | 3d | 2014-07-23 A | 2014-07-26 A | 822-MT-G-D-1050 SS+4d | 100% | 2014-10-07 | 2014-10-09 |  |  | 01 | 822_AB_W11v4 |
| 822-MT-G-D-1030 |  | Side walkway DT chg 125660-125780 (GE02 to GC04) | 10d | 2014-07-29 A | 2014-12-06 A | 822-MT-G-D-1010 SS+4d | 100% | 2014-09-15 | 2014-09-25 |  |  | 01 | 822_AB_W11v4 |
| 822-MT-G-D-1100 |  | Side walkway UT chg 125806-126043 (GB12 to GA01) | 12d | 2014-11-21 A | 2014-12-16 A | 822-MT-G-D-1020 | 100% | 2015-01-08 | 2015-01-21 |  |  | 01 | 822_AB_W11v4 |
| 822-MT-G-D-1110 |  | Side walkway DT chg 125806-126043 (GB12 to GA01) | 9d | 2014-12-02 A | 2014-12-08 A | 822-MT-G-D-1100 SS+3d, 822-MT-G-D-1030 | 100% | 2014-12-15 | 2014-12-24 |  |  | 01 | 822_AB_W11v4 |
|  | 5 | **Remedial works** |  | 2014-08-18 | 2015-03-06 |  |  |  |  |  |  |  |  |
| 822-MT-G-R-1000 |  | Remedial works in G Profile | 22d | 2014-08-18 A | 2015-03-06 A | 822-MT-G-L-1060 FS-23d, 822-MT-G-CW-1020 FS-22d, 822-MT-G-CW-1094 FS-22d, 822-MT-G-D-1100 FS-22d, 822-MT-G-D-1110 FS-22d, 822-MT-G-D-1080 FS-22d, 822-MT-G-D-1090 FS-22d, 822-MT-G-W-1040 FS-22d, 822-MT-G-W-1050 FS-22d, 822-MT-G-L-1015 | 100% | 2014-09-22 | 2014-10-18 |  |  | 01 | 822_AB_W11v4 |
|  | 7 | **Closure at PH1 Junction** |  | 2015-02-02 | 2015-02-28 |  |  |  |  |  |  |  |  |
| 822-MT-G-C-1010 |  | Close Type G centre wall at VAA junction GC03-01 | 13d | 2015-02-02 A | 2015-02-23 A | 822-PH-2A2-1630, 822-PH-2A2-1800 | 100% | 2015-02-16 | 2015-03-05 | start on or after 2015-02-04 | W11 6 day site - no stoppage at CNY | 01 | 822_AB_W11v4 |
| 822-MT-G-C-1030 |  | Complete Type G side access walkway and derailment kerb at VAA junction | 6d | 2015-02-12 A | 2015-02-28 A | 822-MT-G-C-1000 SS, 822-MT-G-C-1010 | 100% | 2015-03-02 | 2015-03-07 |  | W11 6 day site - no stoppage at CNY | 01 | 822_AB_W11v4 |
| 822-MT-G-C-1000 |  | Close Type G lining at VAA junction | 8d | 2015-02-16 A | 2015-02-28 A | 822-PH-2A2-1630, 822-PH-2A2-1800 | 100% | 2015-02-16 | 2015-02-27 | start on or after 2015-02-04 | W11 6 day site - no stoppage at CNY | 01 | 822_AB_W11v4 |
| 822-MT-G-C-1020 |  | Complete Type G evacuation walkway at VAA junction | 3d | 2015-02-26 A | 2015-02-28 A | 822-MT-G-C-1000 SS, 822-MT-G-C-1010 | 100% | 2015-03-09 | 2015-03-11 |  | W11 6 day site - no stoppage at CNY | 01 | 822_AB_W11v4 |
|  | 3 | **Type F Profile** |  | 2014-04-26 | 2015-03-07 |  |  |  |  |  |  |  |  |
|  | 4 | **Lower Centre Wall** |  | 2014-04-26 | 2014-12-10 |  |  |  |  |  |  |  |  |
| 822-MT-F-CW-1000 |  | Centre wall chg 126156-126227 | 5d | 2014-04-26 A | 2014-05-04 A | 822-KD-SS-1000 SS | 100% | 2014-09-01 | 2014-09-05 |  |  | 01 |  |
| 822-MT-F-CW-1010 |  | Centre wall chg 126298-126334 | 4d | 2014-05-06 A | 2014-05-13 A | 822-MT-F-CW-1000 | 100% | 2014-09-06 | 2014-09-11 |  |  | 01 |  |
| 822-MT-F-CW-1020 |  | Centre Wall F01-02 (chg 126070-126084) | 12d | 2014-12-04 A | 2014-12-10 A | 822-MT-F-CW-1010 | 100% | 2014-12-15 | 2014-12-30 | start on or after 2014-12-01 |  |  | 822_AB_W11v4 |

| ID | WBS | Activity | Duration | Start | Finish | Predecessors | Complete | Planned start | Planned finish | Constraint | TimeChainage | Task Type | 822_AB_W11v4 |
| --- | --- | --- | --- | --- | --- | --- | --- | --- | --- | --- | --- | --- | --- |
|  | 5 | **OHVD Slab** |  | 2014-10-27 | 2014-12-01 |  |  |  |  |  |  |  |  |
| 822-MT-F-OS-1000 |  | Erect modified shutter | 12d | 2014-10-27 A | 2014-11-14 A | 822-MT-MN-OS-1020 | 100% | 2014-11-07 | 2014-11-20 |  | 01 | (New) | 822_AB_W11v4 |
| 822-MT-F-OS-1010 |  | OHVD slab - Bay F02 | 4d | 2014-11-13 A | 2014-11-15 A | 822-MT-F-OS-1000 FS-2d | 100% | 2014-12-24 | 2014-12-30 |  | 01 |  | 822_AB_W11v4 |
| 822-MT-F-OS-1020 |  | OHVD Slab - Bay F01 | 4d | 2014-11-27 A | 2014-12-01 A | 822-PH-2A2-1330 | 100% | 2015-01-19 | 2015-01-22 |  |  |  | 822_AB_W11v4 |
|  | 1 | **OHVD Centre Wall** |  | 2014-12-22 | 2015-01-17 |  |  |  |  |  |  |  |  |
| 822-MT-F-OW-1010 |  | OHVD centre wall chg 126126-126157 (F05B , F05A, J02) | 3d | 2014-12-22 A | 2015-01-15 A | 822-MT-F-OW-1000 FS+1d, 822-PH-2A2-1760, 822-PH-2A2-1620 | 100% | 2015-01-22 | 2015-01-24 |  | 01 |  | 822_AB_W11v4 |
| 822-MT-F-OW-1000 |  | OHVD centre wall ( F06, F04, F03, F02, F01) | 14d | 2014-12-31 A | 2015-01-13 A | 822-MT-F-OS-1010 SS+6d, 822-MT-MN-OW-1015 | 100% | 2015-01-05 | 2015-01-20 |  | 01 |  | 822_AB_W11v4 |
| 822-MT-F-OW-1020 |  | Dismantle OHVD wall shutter | 6d | 2015-01-16 A | 2015-01-17 A | 822-MT-F-OW-1010 | 100% | 2015-02-05 | 2015-02-11 |  | 01 |  | 822_AB_W11v4 |
|  | 2 | **Evacuation Walkways** |  | 2014-05-19 | 2014-07-03 |  |  |  |  |  |  |  |  |
| 822-MT-F-EW-1020 |  | Walkway DT chg 126169-126227 | 3d | 2014-05-19 A | 2014-06-18 A | 822-MT-AUT-W-1000 | 100% | 2014-09-01 | 2014-09-03 |  | 01 |  | 822_AB_W11v4 |
| 822-MT-F-EW-1030 |  | Walkway DT chg 126295-126330 | 1d | 2014-06-05 A | 2014-06-05 A | 822-MT-F-EW-1000 | 100% | 2014-09-06 | 2014-09-06 | start on or after 2014-06-09 | 01 |  | 822_AB_W11v4 |
| 822-MT-F-EW-1010 |  | Walkway UT chg 126295-126330 | 1d | 2014-06-20 A | 2014-06-21 A | 822-MT-F-EW-1030, 822-MT-MN-EW-1000 | 100% | 2014-09-18 | 2014-09-18 |  | 01 |  | 822_AB_W11v4 |
| 822-MT-F-EW-1000 |  | Walkway UT chg 126169-126227 | 2d | 2014-06-27 A | 2014-07-03 A | 822-MT-F-EW-1020 | 100% | 2014-09-04 | 2014-09-05 |  | 01 |  | 822_AB_W11v4 |
|  | 3 | **Side Walkways & Derailment Kerbs** |  | 2014-12-18 | 2015-02-14 |  |  |  |  |  |  |  |  |
| 822-MT-F-D-1010 |  | Type F Side Walkway F07 to F21 D/T & U/T | 13d | 2014-12-18 A | 2015-02-05 A | 822-MT-F-D-1000 FS-1d | 100% | 2015-01-07 | 2015-01-21 |  | 01 |  | 822_AB_W11v4 |
| 822-MT-F-D-1000 |  | Type F Centre Derailment Kerb F01 to F04 D/T & U/T | 5d | 2014-12-25 A | 2014-12-30 A |  | 100% | 2015-01-02 | 2015-01-07 | start on or after 2014-12-15 | 01 |  | 822_AB_W11v4 |
| 822-MT-F-D-1020 |  | Type F Side Walkway F01 to F06 D/T & U/T | 8d | 2015-01-03 A | 2015-02-14 A | 822-MT-F-D-1010 | 100% | 2015-01-28 | 2015-02-05 |  | 01 |  | 822_AB_W11v4 |
| 822-MT-F-D-1030 |  | Type F Derailment Kerb F07 to F21 D/T & U/T | 8d | 2015-01-21 A | 2015-02-07 A | 822-MT-F-D-1010 | 100% | 2015-02-05 | 2015-02-13 |  | 01 |  | 822_AB_W11v4 |
| 822-MT-F-D-1050 |  | Type F Derailment Kerb F01 to F06 D/T & U/T | 4d | 2015-01-26 A | 2015-02-13 A | 822-MT-F-D-1030 | 100% | 2015-02-14 | 2015-02-25 |  | 01 |  | 822_AB_W11v4 |
|  | 6 | **Remedial works** |  | 2015-01-15 | 2015-03-07 |  |  |  |  |  |  |  |  |
| 822-MT-F-R-1000 |  | Remedial works in F Profile | 18d | 2015-01-15 A | 2015-03-07 A | 822-MT-F-CW-1010 FS-12d, 822-MT-F-OS-1010 FS-12d, 822-MT-F-D-1050 FS-12d, 822-MT-F-EW-1010 FS-12d, 822-MT-F-OW-1010 FS-17d, 822-MT-F-CW-1020 | 100% | 2015-01-27 | 2015-02-23 |  | 01 |  | 822_AB_W11v4 |
|  | 4 | **Type M (North) Profile** |  | 2014-04-28 | 2015-03-07 |  |  |  |  |  |  |  |  |
|  | 8 | **Lining** |  | 2014-05-26 | 2014-06-20 |  |  |  |  |  |  |  |  |
| 822-MT-MN-OS-1000 |  | Dismantle M lining shutter | 18d | 2014-05-26 A | 2014-06-20 A | 822-KD-SS-1000 SS | 100% | 2014-09-01 | 2014-09-22 | start on or after 2014-05-22 | 01 | (New) | 822_AB_W11v4 |

| ID | WBS | Activity | Duration | Start | Finish | Predecessors | Complete | Planned start | Planned finish | Constraint | TimeChainage | 822_AB_W11v4 | Task Type |
| --- | --- | --- | --- | --- | --- | --- | --- | --- | --- | --- | --- | --- | --- |
|  | 1 | **Invert and Drainage** |  | 2014-04-28 | 2014-11-06 |  |  |  |  |  |  |  |  |
| 822-MT-MN-I-1000 |  | Invert & drainage DT chg 126600-126702 | 6d | 2014-04-28 A | 2014-05-05 A | 822-KD-SS-1000 SS | 100% | 2014-09-01 | 2014-09-06 |  | 01 |  |  |
| 822-MT-MN-I-1010 |  | Invert & drainage UT chg 126678-126811 | 4d | 2014-09-03 A | 2014-10-27 A | 822-MT-MN-I-1000, 822-MT-MN-OS-1020 | 100% | 2014-10-28 | 2014-10-31 |  | 01 | 822_AB_W11v4 |  |
| 822-MT-MN-I-1020 |  | Invert & drainage DT chg 126702-126811 | 4d | 2014-09-08 A | 2014-11-06 A | 822-MT-MN-I-1010 | 100% | 2014-11-01 | 2014-11-05 |  | 01 | 822_AB_W11v4 |  |
|  | 2 | **Lower Centre Wall** |  | 2014-05-14 | 2014-12-13 |  |  |  |  |  |  |  |  |
| 822-MT-MN-CW-1000 |  | Centre wall chg 126330-126487 | 16d | 2014-05-14 A | 2014-05-27 A | 822-MT-F-CW-1010 | 100% | 2014-09-01 | 2014-09-19 |  | 01 |  |  |
| 822-MT-MN-CW-1010 |  | Centre wall chg 126487-126671 | 18d | 2014-06-05 A | 2014-07-16 A | 822-MT-MN-CW-1000, 822-MT-MN-OS-1000 | 100% | 2014-09-23 | 2014-10-15 |  | 01 | 822_AB_W11v4 |  |
| 822-MT-MN-CW-1020 |  | Centre wall chg 126671-126780 (M29a to M38) | 17d | 2014-11-11 A | 2014-11-26 A | 822-MT-MN-CW-1010, 822-MT-MN-I-1020 | 100% | 2014-12-20 | 2015-01-12 |  | 01 | 822_AB_W11v4 |  |
| 822-MT-MN-CW-1025 |  | Centre wall chg 126780-126812 (M39-M41) | 9d | 2014-11-27 A | 2014-12-05 A | 822-MT-MN-CW-1020 | 100% | 2015-01-13 | 2015-01-22 |  |  | 822_AB_W11v4 |  |
| 822-MT-MN-CW-1030 |  | Dismantle M wall shutter | 9d | 2014-12-06 A | 2014-12-13 A | 822-MT-MN-CW-1025 | 100% | 2015-01-23 | 2015-02-02 |  | 01 | 822_AB_W11v4 | (New) |
|  | 6 | **OHVD Slab** |  | 2014-06-27 | 2014-10-25 |  |  |  |  |  |  |  |  |
| 822-MT-MN-OS-1010 |  | OHVD slab chg 126750-126810 | 11d | 2014-06-27 A | 2014-09-05 A | 822-MT-MN-OS-1000, 822-MT-MN-CW-1010 FS-4d | 100% | 2014-10-11 | 2014-10-23 |  | 01 | 822_AB_W11v4 |  |
| 822-MT-MN-OS-1020 |  | Dismantle OHVD slab shutter | 18d | 2014-09-08 A | 2014-10-25 A | 822-MT-MN-OS-1010 | 100% | 2014-10-07 | 2014-10-27 |  | 01 | 822_AB_W11v4 | (New) |
|  | 3 | **OHVD Centre Wall** |  | 2014-04-28 | 2014-12-17 |  |  |  |  |  |  |  |  |
| 822-MT-MN-OW-1000 |  | OHVD centre wall chg 126330-126750 | 29d | 2014-04-28 A | 2014-07-12 A | 822-KD-SS-1000 SS | 100% | 2014-09-01 | 2014-10-07 |  | 01 | 822_AB_W11v4 |  |
| 822-MT-MN-OW-1010 |  | OHVD centre wall chg 126750-126786 (M36 to M38) | 7d | 2014-07-14 A | 2014-07-17 A | 822-MT-MN-OW-1000, 822-MT-MN-OS-1010 | 100% | 2014-10-08 | 2014-10-15 |  | 01 | 822_AB_W11v4 |  |
| 822-MT-MN-OW-1015 |  | OHVD centre wall chg 126786-126812 (M39 to M41) | 3d | 2014-12-12 A | 2014-12-17 A |  | 100% | 2014-12-15 | 2014-12-17 | start on or after 2014-11-25 |  | 822_AB_W11v4 |  |
|  | 4 | **Evacuation Walkways** |  | 2014-06-28 | 2015-01-07 |  |  |  |  |  |  |  |  |
| 822-MT-MN-EW-1000 |  | Walkway DT chg 126330-126474 | 3d | 2014-06-28 A | 2014-07-04 A | 822-MT-F-EW-1030 FS+5d | 100% | 2014-09-01 | 2014-09-03 |  | 01 | 822_AB_W11v4 |  |
| 822-MT-MN-EW-1020 |  | Walkway DT chg 126474-126594 | 5d | 2014-07-04 A | 2014-07-11 A | 822-MT-MN-EW-1010, 822-MT-MN-CW-1010 | 100% | 2014-09-08 | 2014-09-13 |  | 01 | 822_AB_W11v4 |  |
| 822-MT-MN-EW-1010 |  | Walkway UT chg 126330-126474 | 3d | 2014-07-12 A | 2014-07-15 A | 822-MT-MN-EW-1000, 822-MT-F-EW-1010 | 100% | 2014-09-04 | 2014-09-06 |  | 01 | 822_AB_W11v4 |  |
| 822-MT-MN-EW-1030 |  | Walkway UT chg 126594-126474 | 5d | 2014-07-15 A | 2014-07-18 A | 822-MT-MN-EW-1020 | 100% | 2014-09-15 | 2014-09-19 |  | 01 | 822_AB_W11v4 |  |
| 822-MT-MN-EW-1040 |  | Walkway UT chg 126678-126812 (M30 to M41) | 23d | 2014-11-28 A | 2015-01-07 A | 822-MT-MN-EW-1030, 822-MT-MN-CW-1020 | 100% | 2014-12-15 | 2015-01-13 | start on or after 2014-11-19 | 01 | 822_AB_W11v4 |  |
| 822-MT-MN-EW-1050 |  | Walkway DT chg 126678-126812 (M30 to M41) | 23d | 2014-12-17 A | 2014-12-27 A | 822-MT-MN-CW-1020 | 100% | 2015-01-02 | 2015-01-28 |  | 01 | 822_AB_W11v4 |  |

| ID | WBS | Activity | Duration | Start | Finish | Predecessors | Complete | Planned start | Planned finish | Constraint | TimeChainage | 822_AB_W11v4 | Task Type |
| --- | --- | --- | --- | --- | --- | --- | --- | --- | --- | --- | --- | --- | --- |
|  | 5 | **Derailment Kerbs** |  | 2014-12-20 | 2015-01-26 |  |  |  |  |  |  |  |  |
| 822-MT-MN-D-1000 |  | Derailment kerb DT & U/T (M01-M22) | 5d | 2014-12-20 A | 2015-01-26 A | 822-MT-MN-EW-1000, 822-MT-MN-EW-1010, 822-MT-MN-EW-1020, 822-MT-MN-EW-1030 | 100% | 2015-01-03 | 2015-01-08 | start on or after 2015-01-03 | 01 | 822_AB_W11v4 |  |
| 822-MT-MN-D-1030 |  | Derailment kerb DT & U/T (M30-M41) | 5d | 2015-01-13 A | 2015-01-21 A | 822-MT-MN-D-1000 | 100% | 2015-01-22 | 2015-01-27 |  | 01 | 822_AB_W11v4 |  |
|  | 9 | **Side Access Walkways** |  | 2014-07-30 | 2015-01-17 |  |  |  |  |  |  |  |  |
| 822-MT-MN-D-1050 |  | Side walkway UT chg 126330-126546 (M01 to M18) | 2d | 2014-07-30 A | 2014-08-02 A |  | 100% | 2014-11-18 | 2014-11-19 |  | 01 | 822_AB_W11v4 |  |
| 822-MT-MN-D-1055 |  | Side walkway UT chg 126330-126546 (M19 to M22) | 7d | 2014-12-18 A | 2014-12-18 A | 822-MT-MN-D-1050, 822-MT-MN-D-1040 SS | 100% | 2015-01-02 | 2015-01-09 |  |  | 822_AB_W11v4 |  |
| 822-MT-MN-D-1040 |  | Side walkway DT chg 126330-126546 (M01 to M22) | 6d | 2014-12-30 A | 2015-01-07 A | 822-MT-MN-D-1050 | 100% | 2015-01-02 | 2015-01-08 | start on or after 2014-12-15 | 01 | 822_AB_W11v4 |  |
| 822-MT-MN-D-1060 |  | Side walkway UT chg 126678-126812 (M30-M41) | 7d | 2015-01-09 A | 2015-01-14 A | 822-MT-MN-D-1055 | 100% | 2015-01-19 | 2015-01-26 |  | 01 | 822_AB_W11v4 |  |
| 822-MT-MN-D-1070 |  | Side walkway DT chg 126678-126812 (M30-M41) | 7d | 2015-01-10 A | 2015-01-17 A | 822-MT-MN-D-1040 | 100% | 2015-01-24 | 2015-01-31 |  | 01 | 822_AB_W11v4 |  |
|  | 7 | **Temp Bulkhead Removal & Remedial works** |  | 2015-01-15 | 2015-03-07 |  |  |  |  |  |  |  |  |
| 822-MT-MN-R-1010 |  | Remove Temp Bulkhead at Type M | 12d | 2015-01-15 A | 2015-01-22 A |  | 100% | 2015-01-26 | 2015-02-07 | start on or after 2015-01-26 |  | 822_AB_W11v4 |  |
| 822-MT-MN-R-1020 |  | Complete Remaining Type M Walkways and Derailment Kerb (M23-M29) | 12d | 2015-01-19 A | 2015-01-29 A | 822-MT-MN-R-1010 | 100% | 2015-02-04 | 2015-02-24 |  |  | 822_AB_W11v4 |  |
| 822-MT-MN-R-1000 |  | Remedial works in M(N) Profile | 12d | 2015-02-09 A | 2015-03-07 A | 822-MT-MN-OS-1020 FS-18d, 822-MT-MN-R-1020 FF, 822-MT-MN-OW-1015, 822-MT-MN-D-1030, 822-MT-MN-EW-1040, 822-MT-MN-EW-1050, 822-MT-MN-D-1060, 822-MT-MN-D-1070 | 100% | 2015-02-23 | 2015-03-07 |  | 01 | 822_AB_W11v4 |  |
|  | 5 | **Type C (North) Profile - from Pat Heung** |  | 2014-04-27 | 2014-11-22 |  |  |  |  |  |  |  |  |
|  | 6 | **Waterproofing** |  | 2014-04-28 | 2014-05-18 |  |  |  |  |  |  |  |  |
| 822-MT-CN-W-1000 |  | Dismantle C(N) waterproofing gantry | 11d | 2014-04-28 A | 2014-05-18 A | 822-KD-SS-1000 SS | 100% | 2014-09-01 | 2014-09-13 |  | 01 |  | (New) |
|  | 5 | **Lining** |  | 2014-06-11 | 2014-07-10 |  |  |  |  |  |  |  |  |
| 822-MT-CN-L-1010 |  | Dismantle C(N) PH lining shutter | 18d | 2014-06-11 A | 2014-07-10 A | 822-MT-CN-W-1000 | 100% | 2014-09-15 | 2014-10-07 | start on or after 2014-06-16 | 01 | 822_AB_W11v4 | (New) |
|  | 1 | **Invert and Drainage** |  | 2014-05-26 | 2014-08-13 |  |  |  |  |  |  |  |  |
| 822-MT-CN-I-1010 |  | Invert & drainage chg 128890-129050 | 14d | 2014-05-26 A | 2014-05-29 A | 822-MT-CN-L-1000, 822-MT-CN-W-1000 FS+2d | 100% | 2014-09-17 | 2014-10-04 |  | 01 |  |  |
| 822-MT-CN-I-1030 |  | Invert & drainage chg 129050-129195 | 14d | 2014-07-21 A | 2014-08-13 A | 822-MT-CN-I-1010, 822-MT-CN-L-1010, 822-MT-CN-L-1020 | 100% | 2014-10-24 | 2014-11-08 |  | 01 | 822_AB_W11v4 |  |
|  | 2 | **Centre Wall** |  | 2014-04-27 | 2014-09-30 |  |  |  |  |  |  |  |  |
| 822-MT-CN-CW-1000 |  | Centre wall chg 128800-128855 | 5d | 2014-04-27 A | 2014-05-02 A | 822-KD-SS-1000 SS | 100% | 2014-09-01 | 2014-09-05 |  | 01 |  |  |
| 822-MT-CN-CW-1040 |  | Centre wall chg 128855-129015 | 15d | 2014-05-28 A | 2014-06-18 A | 822-MT-CN-CW-1000, 822-MT-CN-I-1010 FS+1d | 100% | 2014-10-07 | 2014-10-23 |  | 01 | 822_AB_W11v4 |  |
| 822-MT-CN-CW-1070 |  | Fill temporary opening (Bays C42-C43) | 8d | 2014-08-04 A | 2014-08-07 A | 822-MT-CN-CW-1050 | 100% | 2014-11-22 | 2014-12-01 |  | 01 | 822_AB_W11v4 |  |
| 822-MT-CN-CW-1050 |  | Centre wall chg 129015-129219 | 21d | 2014-08-08 A | 2014-09-12 A | 822-MT-CN-CW-1040, 822-MT-CN-I-1030 SS+4d | 100% | 2014-10-29 | 2014-11-21 |  | 01 | 822_AB_W11v4 |  |
| 822-MT-CN-CW-1125 |  | Remove tunnel bulkhead at Bay 51 | 6d | 2014-08-08 A | 2014-08-09 A | 822-MT-CN-CW-1050 | 100% | 2014-11-22 | 2014-11-28 |  | 01 | 822_AB_W11v4 |  |
| 822-MT-CN-CW-1130 |  | Centre wall chg 128639-128663 (Bays 151-152) | 8d | 2014-08-08 A | 2014-08-09 A | 822-MT-CN-CW-1110 FS-2d, 822-MT-CN-CW-1125 | 100% | 2014-12-06 | 2014-12-15 |  | 01 | 822_AB_W11v4 |  |
| 822-MT-CN-CW-1110 |  | Fill temporary opening (Bays C110-C111) | 8d | 2014-09-15 A | 2014-09-23 A | 822-MT-CN-CW-1070 FS-2d | 100% | 2014-10-03 | 2014-10-11 |  | 01 | 822_AB_W11v4 |  |
| 822-MT-CN-CW-1150 |  | Dismantle C(N) wall shutter | 13d | 2014-09-24 A | 2014-09-30 A | 822-MT-CN-CW-1130 | 100% | 2014-10-03 | 2014-10-17 |  | 01 | 822_AB_W11v4 |  |

| ID | WBS | Activity | Duration | Start | Finish | Predecessors | Complete | Planned start | Planned finish | TimeChainage | 822_AB_W11v4 |
| --- | --- | --- | --- | --- | --- | --- | --- | --- | --- | --- | --- |
|  | 3 | **Evacuation Walkways** |  | 2014-05-11 | 2014-10-16 |  |  |  |  |  |  |
| 822-MT-CN-EW-1100 |  | Walkway UT chg 128135-128603 | 12d | 2014-05-11 A | 2014-06-25 A | 822-MT-CN-EW-1090 FS+1d | 100% | 2014-11-10 | 2014-11-22 | 01 | 822_AB_W11v4 |
| 822-MT-CN-EW-1040 |  | Walkway DT chg 128603-128975 | 9d | 2014-05-30 A | 2014-08-23 A | 822-MT-CN-EW-1000 | 100% | 2014-10-18 | 2014-10-28 | 01 | 822_AB_W11v4 |
| 822-MT-CN-EW-1090 |  | Walkway UT chg 128603-128975 | 9d | 2014-06-11 A | 2014-10-16 A | 822-MT-CN-EW-1040 | 100% | 2014-10-29 | 2014-11-07 | 01 | 822_AB_W11v4 |
| 822-MT-CN-EW-1000 |  | Walkway DT chg 128195-128603 | 9d | 2014-06-16 A | 2014-08-12 A | 822-MT-CN-CW-1040 SS, 822-MT-CN-DK-1060 SS+1d | 100% | 2014-10-08 | 2014-10-17 | 01 | 822_AB_W11v4 |
| 822-MT-CN-EW-1110 |  | Walkway DT chg 128975-129219 | 6d | 2014-08-11 A | 2014-09-20 A | 822-MT-CN-CW-1050 FS-3d | 100% | 2014-11-19 | 2014-11-25 | 01 | 822_AB_W11v4 |
| 822-MT-CN-EW-1200 |  | Walkways and derailment kerb chg 127331-127355 | 7d | 2014-08-16 A | 2014-09-10 A | 822-MT-CN-CW-1070 | 100% | 2014-12-02 | 2014-12-09 | 01 | 822_AB_W11v4 |
| 822-MT-CN-EW-1220 |  | Walkways and derailment kerb chg 128639-128663 | 7d | 2014-08-23 A | 2014-10-16 A | 822-MT-CN-CW-1130 | 100% | 2014-12-16 | 2014-12-23 | 01 | 822_AB_W11v4 |
| 822-MT-CN-EW-1150 |  | Walkway UT chg 128975-129219 | 6d | 2014-09-05 A | 2014-10-15 A | 822-MT-CN-EW-1110, 822-MT-CN-CW-1050 | 100% | 2014-10-08 | 2014-10-14 | 01 | 822_AB_W11v4 |
| 822-MT-CN-EW-1210 |  | Walkways and derailment kerb chg 128147-128171 | 7d | 2014-09-26 A | 2014-10-09 A | 822-MT-CN-CW-1110 | 100% | 2014-10-03 | 2014-10-10 | 01 | 822_AB_W11v4 |
|  | 4 | **Derailment Kerbs** |  | 2014-04-28 | 2014-10-20 |  |  |  |  |  |  |
| 822-MT-CN-DK-1000 |  | Mobilize slipforming system | 7d | 2014-04-28 A | 2014-05-06 A | 822-KD-SS-1000 SS | 100% | 2014-09-01 | 2014-09-08 |  |  |
| 822-MT-CN-DK-1005 |  | Derailment kerb DT chg 127343-126839 | 5d | 2014-05-07 A | 2014-05-10 A | 822-MT-CN-DK-1000 | 100% | 2014-09-10 | 2014-09-15 | 01 |  |
| 822-MT-CN-DK-1010 |  | Derailment kerb UT chg 126840-127330 | 6d | 2014-05-12 A | 2014-05-17 A | 822-MT-CN-DK-1005 | 100% | 2014-09-16 | 2014-09-22 | 01 |  |
| 822-MT-CN-DK-1020 |  | Derailment kerb UT chg 127330-127730 | 5d | 2014-05-19 A | 2014-05-23 A | 822-MT-CN-DK-1010 | 100% | 2014-09-23 | 2014-09-27 | 01 |  |
| 822-MT-CN-DK-1030 |  | Derailment kerb UT chg 127730-128150 | 3d | 2014-05-24 A | 2014-05-26 A | 822-MT-CN-DK-1020 | 100% | 2014-09-29 | 2014-10-03 | 01 |  |
| 822-MT-CN-DK-1060 |  | Derailment kerb DT chg 128150-127343 | 7d | 2014-05-30 A | 2014-06-06 A | 822-MT-CN-DK-1030 FS+2d | 100% | 2014-10-07 | 2014-10-14 | 01 | 822_AB_W11v4 |
| 822-MT-CN-DK-1070 |  | Derailment kerb DT chg 128603-128150 | 4d | 2014-07-23 A | 2014-09-28 A | 822-MT-CN-DK-1060, 822-MT-CN-EW-1000 | 100% | 2014-10-15 | 2014-10-18 | 01 | 822_AB_W11v4 |
| 822-MT-CN-DK-1400 |  | Derailment kerb UT chg 128150-128603 | 5d | 2014-07-30 A | 2014-10-20 A | 822-MT-CN-DK-1110, 822-MT-CN-EW-1100 FS-3d | 100% | 2014-11-14 | 2014-11-19 | 01 | 822_AB_W11v4 |
| 822-MT-CN-DK-1110 |  | Derailment kerb UT chg 128603-128975 | 4d | 2014-08-04 A | 2014-10-18 A | 822-MT-CN-DK-1100 | 100% | 2014-11-10 | 2014-11-13 | 01 | 822_AB_W11v4 |
| 822-MT-CN-DK-1100 |  | Derailment kerb DTchg 128975-128603 | 4d | 2014-08-07 A | 2014-08-29 A | 822-MT-CN-EW-1090, 822-MT-CN-DK-1080 | 100% | 2014-11-05 | 2014-11-08 | 01 | 822_AB_W11v4 |
| 822-MT-CN-DK-1410 |  | Derailment kerb DT chg 129219-128975 | 4d | 2014-08-20 A | 2014-09-21 A | 822-MT-CN-EW-1150, 822-MT-CN-DK-1095 | 100% | 2014-11-27 | 2014-12-01 | 01 | 822_AB_W11v4 |
| 822-MT-CN-DK-1420 |  | Derailment kerb UT chg 128975-129219 | 4d | 2014-10-16 A | 2014-10-18 A | 822-MT-CN-DK-1410 | 100% | 2014-11-07 | 2014-11-11 | 01 | 822_AB_W11v4 |
|  | 7 | **Side Access Walkway** |  | 2014-06-10 | 2014-10-21 |  |  |  |  |  |  |
| 822-MT-CN-DK-1040 |  | Side walkway DT chg 126839-127331 | 4d | 2014-06-10 A | 2014-09-03 A | 822-MT-CN-DK-1070 | 100% | 2014-09-10 | 2014-09-13 | 01 | 822_AB_W11v4 |
| 822-MT-CN-DK-1050 |  | Side walkway DT chg 127331-128147 | 6d | 2014-06-16 A | 2014-07-19 A | 822-MT-CN-DK-1040 | 100% | 2014-09-15 | 2014-09-20 | 01 | 822_AB_W11v4 |
| 822-MT-CN-DK-1130 |  | Side walkway UT chg 128147-127331 | 4d | 2014-06-28 A | 2014-07-30 A | 822-MT-CN-DK-1120 | 100% | 2014-10-16 | 2014-10-20 | 01 | 822_AB_W11v4 |
| 822-MT-CN-DK-1120 |  | Side walkway UT chg 127331-126840 | 4d | 2014-07-05 A | 2014-09-27 A | 822-MT-CN-DK-1090, 822-MT-CN-EW-1200 | 100% | 2014-10-11 | 2014-10-15 | 01 | 822_AB_W11v4 |
| 822-MT-CN-DK-1430 |  | Side walkway UT chg 128639-128147 | 4d | 2014-07-07 A | 2014-10-18 A | 822-MT-CN-DK-1130 | 100% | 2014-10-21 | 2014-10-24 | 01 | 822_AB_W11v4 |
| 822-MT-CN-DK-1080 |  | Side walkway DT chg 128147-128639 | 4d | 2014-07-10 A | 2014-08-19 A | 822-MT-CN-DK-1050 | 100% | 2014-09-22 | 2014-09-25 | 01 | 822_AB_W11v4 |
| 822-MT-CN-DK-1440 |  | Side walkway UT chg 129219-128639 | 4d | 2014-07-17 A | 2014-10-21 A | 822-MT-CN-DK-1420, 822-MT-CN-DK-1430 | 100% | 2014-10-25 | 2014-10-29 | 01 | 822_AB_W11v4 |
| 822-MT-CN-DK-1090 |  | Side walkway DT chg 128639-129010 | 4d | 2014-08-12 A | 2014-08-23 A | 822-MT-CN-DK-1080, 822-MT-CN-DK-1400 | 100% | 2014-09-29 | 2014-10-04 | 01 | 822_AB_W11v4 |
| 822-MT-CN-DK-1095 |  | Side walkway DT chg 129010-129219 | 2d | 2014-08-29 A | 2014-09-20 A | 822-MT-CN-DK-1090, 822-MT-CN-EW-1110 | 100% | 2014-10-03 | 2014-10-04 | 01 | 822_AB_W11v4 |

| ID | WBS | Activity | Duration | Start | Finish | Predecessors | Complete | Planned start | Planned finish | TimeChainage | 822_AB_W11v4 | Task Type |
| --- | --- | --- | --- | --- | --- | --- | --- | --- | --- | --- | --- | --- |
|  | 8 | **Remedial works** |  | 2014-08-25 | 2014-11-22 |  |  |  |  |  |  |  |
| 822-MT-CN-R-1000 |  | Remedial works in C(N) Profile - PH side | 46d | 2014-08-25 A | 2014-11-22 A | 822-MT-CN-I-1030 FS-42d, 822-MT-CN-DK-1420 FS-42d, 822-MT-CN-DK-1440 FS-45d | 100% | 2014-09-30 | 2014-11-24 | 01 | 822_AB_W11v4 |  |
|  | 14 | **Type C (North) Profile - from Shek Yam** |  | 2014-04-15 | 2014-12-05 |  |  |  |  |  |  |  |
|  | 5 | **Lining** |  | 2014-04-28 | 2014-07-19 |  |  |  |  |  |  |  |
| 822-MT-CN-L-1000 |  | Lining chg 129030-128975 | 6d | 2014-04-28 A | 2014-05-03 A | 822-KD-SS-1000 SS | 100% | 2014-09-01 | 2014-09-06 | 01 |  |  |
| 822-MT-CN-L-1020 |  | Dismantle C(N) SY lining shutter | 18d | 2014-05-04 A | 2014-07-19 A | 822-MT-CN-L-1000, 822-MT-CN-L-1010 FS-4d | 100% | 2014-09-08 | 2014-09-29 | 01 | 822_AB_W11v4 | (New) |
|  | 1 | **Invert and Drainage** |  | 2014-04-23 | 2014-05-12 |  |  |  |  |  |  |  |
| 822-MT-CN-I-1020 |  | Invert & drainage chg 129400-129195 | 12d | 2014-04-23 A | 2014-05-12 A | 822-KD-SS-1000 SS | 100% | 2014-09-01 | 2014-09-15 | 01 |  |  |
|  | 2 | **Centre Wall** |  | 2014-05-03 | 2014-09-30 |  |  |  |  |  |  |  |
| 822-MT-CN-CW-1080 |  | Centre wall chg 129855-129771 | 9d | 2014-05-03 A | 2014-05-22 A | 822-KD-SS-1000 SS, 822-MT-CN-I-1020 SS+1d | 100% | 2014-09-02 | 2014-09-12 | 01 |  |  |
| 822-MT-CN-CW-1090 |  | Centre wall chg129940-129895 | 4d | 2014-05-12 A | 2014-05-15 A | 822-MT-CN-CW-1080 FS+1d | 100% | 2014-09-15 | 2014-09-18 | 01 |  |  |
| 822-MT-CN-CW-1100 |  | Centre wall chg 129771-129435 | 30d | 2014-05-17 A | 2014-07-26 A | 822-MT-CN-CW-1090 FS+1d | 100% | 2014-09-20 | 2014-10-27 | 01 | 822_AB_W11v4 |  |
| 822-MT-CN-CW-1102 |  | Centre wall chg 129435-129255 | 17d | 2014-06-21 A | 2014-07-10 A | 822-MT-CN-CW-1100 | 100% | 2014-10-28 | 2014-11-15 | 01 | 822_AB_W11v4 |  |
| 822-MT-CN-CW-1106 |  | Centre wall chg 129255-129219 | 5d | 2014-07-11 A | 2014-07-26 A | 822-MT-CN-CW-1102 | 100% | 2014-11-17 | 2014-11-21 | 01 | 822_AB_W11v4 |  |
| 822-MT-CN-CW-1120 |  | Dismantle C(N) wall shutter | 14d | 2014-09-18 A | 2014-09-30 A | 822-MT-CN-L-1020, 822-MT-CN-CW-1106 | 100% | 2014-10-03 | 2014-10-18 | 01 | 822_AB_W11v4 | (New) |
|  | 3 | **Evacuation Walkways** |  | 2014-04-29 | 2014-10-15 |  |  |  |  |  |  |  |
| 822-MT-CN-EW-1120 |  | Walkway DT chg 130203-129915 | 8d | 2014-04-29 A | 2014-05-17 A | 822-KD-SS-1000 SS | 100% | 2014-09-01 | 2014-09-10 | 01 |  |  |
| 822-MT-CN-EW-1130 |  | Walkway UT chg 130539-129951 | 20d | 2014-05-22 A | 2014-06-28 A | 822-MT-CN-EW-1120, 822-MT-CN-DK-1380 | 100% | 2014-09-18 | 2014-10-13 | 01 | 822_AB_W11v4 |  |
| 822-MT-CN-EW-1140 |  | Walkway UT chg 129951-129711 | 8d | 2014-06-09 A | 2014-10-15 A | 822-MT-CN-EW-1130, 822-MT-CN-CW-1100 | 100% | 2014-10-14 | 2014-10-22 | 01 | 822_AB_W11v4 |  |
| 822-MT-CN-EW-1170 |  | Walkway UT chg 129711-129567 | 5d | 2014-06-12 A | 2014-06-19 A | 822-MT-CN-EW-1160 | 100% | 2014-11-03 | 2014-11-07 | 01 | 822_AB_W11v4 |  |
| 822-MT-CN-EW-1160 |  | Walkway DT chg 129915-129627 | 9d | 2014-06-14 A | 2014-09-18 A | 822-MT-CN-EW-1140 | 100% | 2014-10-23 | 2014-11-01 | 01 | 822_AB_W11v4 |  |
| 822-MT-CN-EW-1190 |  | Walkway DT chg 129627-129219 | 35d | 2014-06-18 A | 2014-08-16 A | 822-MT-CN-EW-1180 SS+6d | 100% | 2014-11-15 | 2014-12-27 | 01 | 822_AB_W11v4 |  |
| 822-MT-CN-EW-1180 |  | Walkway UT chg 129567-129219 | 35d | 2014-06-19 A | 2014-09-03 A | 822-MT-CN-EW-1170 | 100% | 2014-11-08 | 2014-12-18 | 01 | 822_AB_W11v4 |  |
| 822-MT-CN-EW-1240 |  | Walkway DT chg 130865-130899 | 2d | 2014-09-18 A | 2014-09-23 A | 822-MT-CN-DK-1390 | 100% | 2014-10-08 | 2014-10-09 | 01 | 822_AB_W11v4 |  |

| ID | WBS | Activity | Duration | Start | Finish | Predecessors | Complete | Planned start | Planned finish | Constraint | TimeChainage | 822_AB_W11v4 | Task Type |
| --- | --- | --- | --- | --- | --- | --- | --- | --- | --- | --- | --- | --- | --- |
|  | 4 | **Derailment Kerbs** |  | 2014-04-28 | 2014-10-21 |  |  |  |  |  |  |  |  |
| 822-MT-CN-DK-1360 |  | Derailment kerb DT chg 130550-130899 | 9d | 2014-04-28 A | 2014-09-23 A | 822-KD-SS-1000 SS | 100% | 2014-09-01 | 2014-09-11 |  | 01 | 822_AB_W11v4 |  |
| 822-MT-CN-DK-1380 |  | Derailment kerb DT chg 129965-130470 | 5d | 2014-05-16 A | 2014-05-21 A | 822-MT-CN-DK-1360, 822-MT-CN-CW-1090 | 100% | 2014-09-12 | 2014-09-17 |  | 01 |  |  |
| 822-MT-CN-DK-1450 |  | Derailment kerb UT chg 130899-129950 | 30d | 2014-05-27 A | 2014-06-13 A | 822-MT-CN-DK-1380 | 100% | 2014-09-18 | 2014-10-24 |  | 01 | 822_AB_W11v4 |  |
| 822-MT-CN-DK-1460 |  | Derailment kerb DT chg 129965-129219 | 45d | 2014-06-08 A | 2014-09-20 A | 822-MT-CN-DK-1450, 822-MT-CN-EW-1140 | 100% | 2014-10-25 | 2014-12-16 |  | 01 | 822_AB_W11v4 |  |
| 822-MT-CN-DK-1470 |  | Derailment kerb UT chg 129950-129219 | 35d | 2014-06-13 A | 2014-10-21 A | 822-MT-CN-DK-1460 FS-24d, 822-MT-CN-EW-1180 SS+6d | 100% | 2014-11-19 | 2014-12-31 |  | 01 | 822_AB_W11v4 |  |
|  | 7 | **Side Access Walkway** |  | 2014-04-15 | 2014-10-25 |  |  |  |  |  |  |  |  |
| 822-MT-CN-DK-1350 |  | Side walkway DT chg 130863-130095 | 10d | 2014-04-15 A | 2014-05-09 A | 822-KD-SS-1000 SS | 100% | 2014-09-01 | 2014-09-12 |  | 01 |  |  |
| 822-MT-CN-DK-1390 |  | Side walkway DT chg 130095-129219 | 40d | 2014-05-12 A | 2014-09-18 A | 822-MT-CN-DK-1370, 822-MT-CN-DK-1460 SS+6d | 100% | 2014-11-01 | 2014-12-17 |  | 01 | 822_AB_W11v4 |  |
| 822-MT-CN-DK-1370 |  | Side walkway UT chg 130899-129950 | 30d | 2014-05-24 A | 2014-10-25 A | 822-MT-CN-DK-1350, 822-MT-CN-DK-1450 SS+6d | 100% | 2014-09-25 | 2014-10-31 |  | 01 | 822_AB_W11v4 |  |
| 822-MT-CN-DK-1480 |  | Side walkway UT chg 129950-129219 | 35d | 2014-05-24 A | 2014-10-22 A | 822-MT-CN-DK-1470 SS+6d | 100% | 2014-11-26 | 2015-01-08 |  | 01 | 822_AB_W11v4 |  |
| 822-MT-CN-DK-1490 |  | Side walkway DT chg 130863-130899 | 2d | 2014-09-16 A | 2014-09-24 A | 822-MT-CN-EW-1240 | 100% | 2014-10-03 | 2014-10-04 |  | 01 | 822_AB_W11v4 |  |
|  | 8 | **Remedial works** |  | 2014-08-25 | 2014-12-05 |  |  |  |  |  |  |  |  |
| 822-MT-CN-R-1010 |  | Remedial works in C(N) Profile - SYH side | 46d | 2014-08-25 A | 2014-12-05 A | 822-MT-CN-L-1000, 822-MT-CN-I-1020, 822-MT-CN-CW-1120 FS-38d, 822-MT-CN-EW-1190 FS-38d, 822-MT-CN-EW-1240 FS-38d, 822-MT-CN-DK-1470 FS-38d, 822-MT-CN-DK-1480 FS-38d, 822-MT-CN-DK-1490 FS-38d | 100% | 2014-09-03 | 2014-10-29 |  | 01 | 822_AB_W11v4 |  |
|  | 6 | **Type M (South) Profile** |  | 2014-04-18 | 2014-12-05 |  |  |  |  |  |  |  |  |
|  | 7 | **Lining** |  | 2014-05-13 | 2014-09-20 |  |  |  |  |  |  |  |  |
| 822-MT-MS-L-1000 |  | Tram shutter from Type P to bay M94 | 1d | 2014-05-13 A | 2014-05-13 A | 822-SY-P-1030 | 100% | 2014-09-24 | 2014-09-24 |  |  |  |  |
| 822-MT-MS-L-1020 |  | Lining to bay M92 chg 130964-130974 | 2d | 2014-05-13 A | 2014-05-14 A | 822-MT-MS-L-1000 | 100% | 2014-09-25 | 2014-09-26 |  | 01 |  |  |
| 822-MT-MS-L-1030 |  | Lining to bay M93 chg 130954-130964 | 2d | 2014-05-16 A | 2014-05-17 A | 822-MT-MS-L-1020 | 100% | 2014-09-27 | 2014-09-29 |  | 01 |  |  |
| 822-MT-MS-L-1010 |  | Lining to bay M94 chg 130944-130954 | 2d | 2014-05-19 A | 2014-05-20 A | 822-MT-MS-L-1030 | 100% | 2014-09-30 | 2014-10-03 |  | 01 |  |  |
| 822-MT-MS-L-1040 |  | Dismantle M(S) lining shutter | 18d | 2014-09-08 A | 2014-09-20 A | 822-MT-MS-L-1010, 822-MT-MN-OS-1000 | 100% | 2014-10-03 | 2014-10-23 | start on or after 2014-06-23 | 01 | 822_AB_W11v4 | (New) |
|  | 1 | **Invert and Drainage** |  | 2014-04-18 | 2014-08-05 |  |  |  |  |  |  |  |  |
| 822-MT-MS-I-1000 |  | Invert & drainage chg 131170-131045 | 19d | 2014-04-18 A | 2014-05-21 A | 822-KD-SS-1000 SS | 100% | 2014-09-01 | 2014-09-23 |  | 01 |  |  |
| 822-MT-MS-I-1010 |  | Invert & drainage chg 131045-131011 | 6d | 2014-07-05 A | 2014-07-12 A | 822-MT-MS-I-1000, 822-MT-MS-OS-1000 | 100% | 2014-11-03 | 2014-11-08 |  | 01 | 822_AB_W11v4 |  |
| 822-MT-MS-I-1020 |  | Invert & drainage chg 131011-130946 | 6d | 2014-07-09 A | 2014-08-05 A | 822-MT-MS-I-1010, 822-MT-MS-OS-1010 | 100% | 2014-11-26 | 2014-12-02 |  | 01 | 822_AB_W11v4 |  |

| ID | WBS | Activity | Duration | Start | Finish | Predecessors | Complete | Planned start | Planned finish | TimeChainage | 822_AB_W11v4 | Task Type |
| --- | --- | --- | --- | --- | --- | --- | --- | --- | --- | --- | --- | --- |
|  | 2 | **Lower Centre Wall** |  | 2014-04-28 | 2014-09-30 |  |  |  |  |  |  |  |
| 822-MT-MS-CW-1000 |  | Centre wall chg 131345-131106 | 19d | 2014-04-28 A | 2014-05-21 A | 822-KD-SS-1000 SS | 100% | 2014-09-01 | 2014-09-23 | 01 | 822_AB_W11v4 |  |
| 822-MT-MS-CW-1010 |  | Centre wall chg 131106-131035 | 7d | 2014-05-27 A | 2014-09-23 A | 822-MT-MS-CW-1000, 822-MT-MS-I-1010 | 100% | 2014-11-10 | 2014-11-17 | 01 | 822_AB_W11v4 |  |
| 822-MT-MS-CW-1020 |  | Centre wall chg 131035-130946 | 9d | 2014-09-05 A | 2014-09-16 A | 822-MT-MS-CW-1010, 822-MT-MS-I-1020 | 100% | 2014-10-08 | 2014-10-17 | 01 | 822_AB_W11v4 |  |
| 822-MT-CS-C-1020 |  | Close centre wall opening (bay 61) | 12d | 2014-09-08 A | 2014-09-13 A | 822-MT-MS-CW-1020 | 100% | 2014-10-18 | 2014-10-31 | 01 | 822_AB_W11v4 |  |
| 822-MT-MS-CW-1030 |  | Dismantle M(S) centre wall shutter | 12d | 2014-09-24 A | 2014-09-30 A | 822-MT-MS-CW-1020 | 100% | 2014-10-18 | 2014-10-31 | 01 | 822_AB_W11v4 | (New) |
|  | 6 | **OHVD Slab** |  | 2014-08-08 | 2014-08-28 |  |  |  |  |  |  |  |
| 822-MT-MS-OS-1000 |  | OHVD slab chg 130998-130946 | 7d | 2014-08-08 A | 2014-08-22 A | 822-MT-MS-L-1040 | 100% | 2014-09-23 | 2014-09-30 | 01 | 822_AB_W11v4 |  |
| 822-MT-MS-OS-1010 |  | Dismantle OHVD slab shutter | 20d | 2014-08-16 A | 2014-08-28 A | 822-MT-MS-OS-1000 | 100% | 2014-10-03 | 2014-10-25 | 01 | 822_AB_W11v4 | (New) |
|  | 3 | **OHVD Centre Wall** |  | 2014-04-28 | 2014-11-30 |  |  |  |  |  |  |  |
| 822-MT-MS-OW-0100 |  | Planning design and approvals for OHVD centre wall | 23d | 2014-04-28 A | 2014-05-24 A | 822-KD-SS-1000 SS | 100% | 2014-09-01 | 2014-09-27 |  | 822_AB_W11v4 |  |
| 822-MT-MS-OW-0110 |  | Start kickers + rebar & set up shutter | 16d | 2014-05-26 A | 2014-06-13 A | 822-MT-MS-OW-0100 | 100% | 2014-09-29 | 2014-10-18 |  | 822_AB_W11v4 | (New) |
| 822-MT-MS-OW-1000 |  | OHVD centre wall chg 132045-132009 | 5d | 2014-06-14 A | 2014-06-17 A | 822-MT-MS-OW-0110 | 100% | 2014-10-20 | 2014-10-24 | 01 | 822_AB_W11v4 |  |
| 822-MT-MS-OW-1010 |  | OHVD centre wall chg 132009-131973 | 6d | 2014-06-20 A | 2014-06-23 A | 822-MT-MS-OW-1000 | 100% | 2014-10-25 | 2014-10-31 | 01 | 822_AB_W11v4 |  |
| 822-MT-MS-OW-1020 |  | OHVD centre wall chg 131973-131901 | 7d | 2014-06-24 A | 2014-07-03 A | 822-MT-MS-OW-1010 | 100% | 2014-11-01 | 2014-11-08 | 01 | 822_AB_W11v4 |  |
| 822-MT-MS-OW-1040 |  | OHVD centre wall chg 131400-130946 | 25d | 2014-07-02 A | 2014-11-26 A | 822-MT-MS-OW-1030 | 100% | 2014-12-11 | 2015-01-12 | 01 | 822_AB_W11v4 |  |
| 822-MT-MS-OW-1030 |  | OHVD centre wall chg 131901-131400 | 27d | 2014-07-03 A | 2014-07-29 A | 822-MT-MS-OW-1020 | 100% | 2014-11-10 | 2014-12-10 | 01 | 822_AB_W11v4 |  |
| 822-MT-MS-OW-1050 |  | Dismantle OHVD wall shutter | 1d | 2014-11-27 A | 2014-11-30 A | 822-MT-MS-OW-1040 | 100% | 2015-01-09 | 2015-01-09 | 01 | 822_AB_W11v4 | (New) |
|  | 4 | **Evacuation Walkways** |  | 2014-05-06 | 2014-11-27 |  |  |  |  |  |  |  |
| 822-MT-MS-EW-1000 |  | Walkway DT chg 131525-131300 | 6d | 2014-05-06 A | 2014-05-20 A | 822-KD-SS-1000 SS, 822-MT-MS-DK-1100 | 100% | 2014-09-17 | 2014-09-23 | 01 |  |  |
| 822-MT-MS-EW-1030 |  | Walkway DT chg 131300-131083 | 6d | 2014-05-17 A | 2014-09-11 A | 822-MT-MS-EW-1000 | 100% | 2014-09-24 | 2014-09-30 | 01 | 822_AB_W11v4 |  |
| 822-MT-MS-EW-1090 |  | Walkway UT chg 132055-131880 | 4d | 2014-05-18 A | 2014-10-21 A | 822-MT-MS-EW-1010 | 100% | 2014-10-03 | 2014-10-07 | 01 | 822_AB_W11v4 |  |
| 822-MT-MS-EW-1010 |  | Walkway UT chg 131880-131500 | 8d | 2014-05-19 A | 2014-08-02 A | 822-MT-CS-EW-1010 | 100% | 2014-09-22 | 2014-09-30 | 01 | 822_AB_W11v4 |  |
| 822-MT-MS-EW-1020 |  | Walkway UT chg 131500-131083 | 12d | 2014-05-30 A | 2014-10-18 A | 822-MT-MS-EW-1010 | 100% | 2014-10-03 | 2014-10-16 | 01 | 822_AB_W11v4 |  |
| 822-MT-MS-EW-1050 |  | Walkway DT chg 131083-131035 | 3d | 2014-09-11 A | 2014-09-25 A | 822-MT-MS-EW-1040 | 100% | 2014-10-07 | 2014-10-09 | 01 | 822_AB_W11v4 |  |
| 822-MT-MS-EW-1070 |  | Walkway DT chg 131035-130946 | 3d | 2014-09-15 A | 2014-09-25 A | 822-MT-MS-EW-1060 | 100% | 2014-10-07 | 2014-10-09 | 01 | 822_AB_W11v4 |  |
| 822-MT-MS-EW-1040 |  | Walkway UT chg 131083-131035 | 3d | 2014-10-10 A | 2014-10-11 A | 822-MT-MS-CW-1010 | 100% | 2014-11-01 | 2014-11-04 | 01 | 822_AB_W11v4 |  |
| 822-MT-MS-EW-1060 |  | Walkway UT chg 131035-130946 | 3d | 2014-10-11 A | 2014-11-27 A | 822-MT-MS-CW-1020, 822-MT-MS-CW-1030 FS-10d | 100% | 2014-11-01 | 2014-11-04 | 01 | 822_AB_W11v4 |  |

| ID | WBS | Activity | Duration | Start | Finish | Predecessors | Complete | Planned start | Planned finish | TimeChainage | 822_AB_W11v4 |
| --- | --- | --- | --- | --- | --- | --- | --- | --- | --- | --- | --- |
|  | 5 | **Derailment Kerbs** |  | 2014-05-09 | 2014-11-28 |  |  |  |  |  |  |
| 822-MT-MS-DK-1020 |  | Derailment kerb DT chg 132040-131083 | 30d | 2014-05-09 A | 2014-09-26 A | 822-MT-CS-DK-1020, 822-MT-MS-DK-1000 | 100% | 2014-11-07 | 2014-12-11 | 01 | 822_AB_W11v4 |
| 822-MT-MS-DK-1100 |  | Derailment kerb DT chg 131540-131990 | 4d | 2014-05-09 A | 2014-06-16 A | 822-MT-MS-DK-1010 FS+2d | 100% | 2014-09-12 | 2014-09-16 | 01 | 822_AB_W11v4 |
| 822-MT-MS-DK-1000 |  | Derailment kerb UT chg 132030-131083 | 30d | 2014-05-28 A | 2014-10-27 A | 822-MT-CS-DK-1000, 822-MT-MS-DK-1100, 822-MT-MS-DK-1030 FS-1d | 100% | 2014-10-03 | 2014-11-06 | 01 | 822_AB_W11v4 |
| 822-MT-CS-C-1030 |  | Complete walkways and derailment kerbs (bays 38-40) | 6d | 2014-08-06 A | 2014-08-21 A | 822-MT-CS-C-1020 | 100% | 2014-10-03 | 2014-10-09 | 01 | 822_AB_W11v4 |
| 822-MT-MS-DK-1040 |  | Derailment & side access walkways chg 131083-131035 | 6d | 2014-09-18 A | 2014-10-13 A | 822-MT-MS-EW-1050 FS+1d | 100% | 2014-10-03 | 2014-10-09 | 01 | 822_AB_W11v4 |
| 822-MT-MS-DK-1050 |  | Derailment & side access walkways chg 130946-131035 | 6d | 2014-09-18 A | 2014-11-28 A | 822-MT-MS-EW-1070 FS-2d | 100% | 2014-10-03 | 2014-10-09 | 01 | 822_AB_W11v4 |
|  | 8 | **Side Access Walkways** |  | 2014-04-29 | 2014-10-28 |  |  |  |  |  |  |
| 822-MT-MS-DK-1010 |  | Side walkway DT chg 131780-131540 | 7d | 2014-04-29 A | 2014-05-07 A | 822-KD-SS-1000 SS | 100% | 2014-09-01 | 2014-09-08 | 01 |  |
| 822-MT-MS-DK-1030 |  | Side walkway DT chg 131540-131083 | 13d | 2014-05-14 A | 2014-09-24 A | 822-MT-MS-DK-1010, 822-MT-MS-DK-1100 | 100% | 2014-09-17 | 2014-10-03 | 01 | 822_AB_W11v4 |
| 822-MT-MS-DK-1070 |  | Side walkway UT chg 131380-132033 | 9d | 2014-05-20 A | 2014-10-28 A | 822-KD-SS-1000 SS, 822-MT-MS-DK-1030 | 100% | 2014-10-04 | 2014-10-14 | 01 | 822_AB_W11v4 |
| 822-MT-MS-DK-1090 |  | Side walkway UT chg 131380-131083 | 10d | 2014-05-20 A | 2014-10-24 A | 822-MT-MS-DK-1080 | 100% | 2014-10-18 | 2014-10-29 | 01 | 822_AB_W11v4 |
| 822-MT-MS-DK-1080 |  | Side walkway DT chg 132033-131985 | 3d | 2014-09-08 A | 2014-09-30 A | 822-MT-MS-DK-1070 | 100% | 2014-10-04 | 2014-10-07 | 01 | 822_AB_W11v4 |
|  | 9 | **Remedial works** |  | 2014-07-15 | 2014-12-05 |  |  |  |  |  |  |
| 822-MT-MS-R-1000 |  | Remedial works in M(S) Profile | 40d | 2014-07-15 A | 2014-12-05 A | 822-MT-MS-OS-1010 FS-36d, 822-MT-MS-OW-1040 FS-36d, 822-MT-MS-DK-1020 FS-36d, 822-MT-MS-DK-1050 FS-40d, 822-MT-MS-DK-1090 FS-36d, 822-MT-MS-CW-1030 FS-36d | 100% | 2014-09-01 | 2014-10-20 | 01 | 822_AB_W11v4 |
|  | 7 | **Type C (South) Profile** |  | 2014-05-05 | 2017-01-24 |  |  |  |  |  |  |
|  | 1 | **Evacuation Walkways** |  | 2014-05-07 | 2014-12-06 |  |  |  |  |  |  |
| 822-MT-CS-EW-1010 |  | Walkway UT chg 132135-132551 | 10d | 2014-05-07 A | 2014-05-17 A | 822-KD-SS-1000 SS, 822-MT-MS-DK-1010 | 100% | 2014-09-01 | 2014-09-12 | 01 |  |
| 822-MT-CS-EW-1020 |  | Walkway UT chg 132135-132075 | 10d | 2014-07-12 A | 2014-11-15 A | 822-MT-CS-EW-1010 FS+6d | 100% | 2014-09-20 | 2014-10-03 | 01 | 822_AB_W11v4 |
| 822-MT-CS-EW-1030 |  | T-junction remaining Eva Walkway before DC Works | 3d | 2014-12-03 A | 2014-12-06 A | 822-MT-CS-EW-1020, 822-SM-2A2-JIS-1060 | 100% | 2015-01-19 | 2015-01-21 | 01 | 822_AB_W11v4 |
|  | 2 | **Derailment Kerbs** |  | 2014-05-14 | 2014-12-06 |  |  |  |  |  |  |
| 822-MT-CS-DK-1000 |  | Derailment kerb UT chg 132099-132520 | 6d | 2014-05-14 A | 2014-10-31 A | 822-MT-CS-EW-1010 SS+6d | 100% | 2014-09-08 | 2014-09-15 | 01 | 822_AB_W11v4 |
| 822-MT-CS-DK-1020 |  | Derailment kerb DT chg 132085-132551 | 6d | 2014-05-22 A | 2014-05-28 A | 822-MT-CS-DK-1000 | 100% | 2014-09-16 | 2014-09-22 | 01 |  |
| 822-MT-CS-DK-1060 |  | T-junction remaining Derailment Kerb before DC Works | 2d | 2014-12-03 A | 2014-12-06 A | 822-MT-CS-EW-1030 FS-1d | 100% | 2015-01-21 | 2015-01-22 |  | 822_AB_W11v4 |

| ID | WBS | Activity | Duration | Start | Finish | Predecessors | Complete | Planned start | Planned finish | Total float | Free float | Constraint | TimeChainage | 822_AB_W11v4 |
| --- | --- | --- | --- | --- | --- | --- | --- | --- | --- | --- | --- | --- | --- | --- |
|  | 5 | **Side Access Walkways** |  | 2014-05-05 | 2014-12-06 |  |  |  |  |  |  |  |  |  |
| 822-MT-CS-DK-1010 |  | Side walkway UT chg 132480-132099 | 11d | 2014-05-05 A | 2014-10-30 A | 822-KD-SS-1000 SS, 822-MT-MS-DK-1010 FS-2d | 100% | 2014-09-01 | 2014-09-13 |  |  |  | 01 | 822_AB_W11v4 |
| 822-MT-CS-DK-1040 |  | Side walkway UT chg 132520-132480 | 2d | 2014-06-10 A | 2014-06-11 A | 822-KD-SS-1000 SS, 822-MT-MS-DK-1070 FS-1d | 100% | 2014-09-01 | 2014-09-02 |  |  |  | 01 | 822_AB_W11v4 |
| 822-MT-CS-DK-1050 |  | Side walkway DT chg 132551-132510 | 1d | 2014-06-11 A | 2014-06-11 A | 822-MT-CS-DK-1020, 822-MT-CS-DK-1040 | 100% | 2014-09-23 | 2014-09-23 |  |  |  | 01 | 822_AB_W11v4 |
| 822-MT-CS-DK-1030 |  | Side walkway DT chg 132130-132085 | 1d | 2014-06-12 A | 2014-06-12 A | 822-MT-CS-DK-1020 SS+6d, 822-MT-CS-DK-1050 | 100% | 2014-09-24 | 2014-09-24 |  |  |  | 01 | 822_AB_W11v4 |
| 822-MT-CS-DK-1070 |  | T-junction remaining Side Access Walkway before DC Works | 3d | 2014-12-03 A | 2014-12-06 A | 822-MT-CS-EW-1030 FS-2d | 100% | 2015-01-20 | 2015-01-22 |  |  |  |  | 822_AB_W11v4 |
|  | 4 | **Remedial works** |  | 2014-05-29 | 2014-06-19 |  |  |  |  |  |  |  |  |  |
| 822-MT-CS-R-1000 |  | Remedial works in C(S) Profile | 18d | 2014-05-29 A | 2014-06-19 A | 822-MT-CS-EW-1030 FF-12d, 822-MT-CS-DK-1030 FS-12d, 822-MT-CS-DK-1020 | 100% | 2014-09-23 | 2014-10-15 |  |  |  | 01 | 822_AB_W11v4 |
|  | 3 | **Closure of Lining after DC Works** |  | 2017-01-02 | 2017-01-24 |  |  |  |  |  |  |  |  |  |
| 822-MT-CS-C-1050 |  | Mobilize to site (start date specified by Engineer) | 6d | 2017-01-02 | 2017-01-07 | 822-MT-CS-C-1030 |  |  |  | -576.12d | 0d | start on or after 2015-04-07 |  |  |
| 822-MT-CS-C-1060 |  | Close external wall lining at Access Adit (leaving 2mx2m opening) | 12d | 2017-01-04 | 2017-01-17 | 822-MT-CS-C-1050 FS-4d |  |  |  | -576.12d | 0d |  | 01 |  |
| 822-MT-CS-C-1070 |  | Complete Remaining side access walkway | 4d | 2017-01-18 | 2017-01-21 | 822-MT-CS-C-1060 |  |  |  | -576.12d | 0d |  | 01 |  |
| 822-MT-CS-C-1080 |  | Clear site | 4d | 2017-01-20 | 2017-01-24 | 822-MT-CS-C-1070 FS-2d |  |  |  | -576.12d | 0d |  |  |  |
|  | 15 | **Main Tunnel Clean Out** |  | 2014-06-10 | 2015-03-07 |  |  |  |  |  |  |  |  |  |
| 822-MT-CO-1010 |  | Clean out tunnel chg 125800 to chg 126840 | 4d | 2014-06-10 A | 2015-03-07 A | 822-MT-G-CW-1094, 822-MT-MN-R-1000 FF-4d, 822-MT-F-D-1050, 822-MT-CO-1000 | 100% | 2014-11-20 | 2014-11-24 |  |  |  | 01 | 822_AB_W11v4 |
| 822-MT-CO-1020 |  | Clean out tunnel chg 126840 to chg 130890 | 11d | 2014-09-15 A | 2014-12-06 A | 822-MT-CN-DK-1440 FS-10d, 822-MT-CN-DK-1420 FS-6d, 822-MT-CN-EW-1240, 822-MT-CN-DK-1470, 822-MT-CN-DK-1480 | 100% | 2014-10-10 | 2014-10-22 |  |  |  | 01 | 822_AB_W11v4 |
| 822-MT-CO-1030 |  | Clean out tunnel chg 130890 to chg 132540 | 6d | 2014-09-15 A | 2014-12-06 A | 822-MT-CS-R-1000, 822-MT-MS-R-1000 FS-6d | 100% | 2014-11-06 | 2014-11-12 |  |  |  | 01 | 822_AB_W11v4 |
| 822-MT-CO-1000 |  | Clean out tunnel chg 125354 to chg 125800 | 2d | 2015-02-28 A | 2015-03-07 A | 822-MT-AB-R-1010, 822-MT-AB-R-1000, 822-MT-G-CW-1035, 822-MT-G-D-1070 | 100% | 2015-03-02 | 2015-03-03 |  |  |  | 01 | 822_AB_W11v4 |
|  | 9 | **Type E (North) Nozzle** |  | 2014-04-28 | 2015-02-14 |  |  |  |  |  |  |  |  |  |
|  | 3 | **Lining - Walls** |  | 2014-04-28 | 2014-06-26 |  |  |  |  |  |  |  |  |  |
| 822-PH-E-N-1005 |  | E(N) Lining Wall (Group 1-20m)- CH126+070 to CH 126+050 UT | 20d | 2014-04-28 A | 2014-06-26 A | 822-KD-SS-1000 SS | 100% | 2014-09-01 | 2014-09-24 |  |  |  |  | 822_AB_W11v4 |
| 822-PH-E-N-1010 |  | E(N) Lining Wall (Group 2 - 20m) - CH126+070 to CH126050 DT | 26d | 2014-05-27 A | 2014-06-26 A | 822-PH-E-N-1005 FS-4d | 100% | 2014-09-20 | 2014-10-22 |  |  |  |  | 822_AB_W11v4 |
| 822-PH-E-N-1020 |  | E(N) Lining Wall (Group 3 -7.2m) - CH126+050 to CH126043 | 13d | 2014-06-16 A | 2014-06-26 A | 822-PH-E-N-1010, 822-PH-E-S-1000 FS+2d | 100% | 2014-10-23 | 2014-11-06 |  |  |  |  | 822_AB_W11v4 |
|  | 4 | **Lower Centre Wall** |  | 2014-04-28 | 2015-02-14 |  |  |  |  |  |  |  |  |  |
| 822-PH-E-N-1000 |  | Procure centre wall formwork & prepare | 30d | 2014-04-28 A | 2014-06-03 A | 822-KD-SS-1000 SS | 100% | 2014-09-01 | 2014-10-08 |  |  |  |  | 822_AB_W11v4 |
| 822-PH-E-N-1030 |  | E(N) Assembly of Dividing Wall Formwork | 24d | 2014-06-04 A | 2014-06-28 A | 822-PH-E-N-1000 | 100% | 2014-10-09 | 2014-11-05 |  |  |  |  | 822_AB_W11v4 |
| 822-PH-E-N-1040 |  | E(N) Dividing Wall - (Group 1 -14.2m 400thk 7.418mH) | 8d | 2014-06-09 A | 2014-07-22 A | 822-PH-E-N-1010, 822-PH-E-N-1030 | 100% | 2014-11-06 | 2014-11-14 |  |  |  |  | 822_AB_W11v4 |
| 822-PH-E-N-1050 |  | E(N) Dividing Wall - (Group 2 -4.4m 400thk 7.918mH) | 8d | 2014-06-09 A | 2014-07-22 A | 822-PH-E-N-1010, 822-PH-E-N-1040 SS | 100% | 2014-11-06 | 2014-11-14 |  |  |  |  | 822_AB_W11v4 |
| 822-PH-E-N-1060 |  | E(N) Dividing Wall - (Group 3 - 9.1m 400thk 8.848mH) | 8d | 2014-06-09 A | 2014-07-22 A | 822-PH-E-N-1050, 822-PH-E-N-1020 | 100% | 2014-11-15 | 2014-11-24 |  |  |  |  | 822_AB_W11v4 |
| 822-PH-E-N-1070 |  | E(N) Partial Derailment Kerb and Walkway | 3d | 2014-07-25 A | 2014-07-26 A | 822-PH-E-N-1040, 822-PH-E-N-1050 | 100% | 2014-11-15 | 2014-11-18 |  |  |  |  | 822_AB_W11v4 |
| 822-PH-E-N-1230 |  | E(N) Remaining Derailment Kerb and Walkway (after Megashore and portal beam removal) | 3d | 2015-01-27 A | 2015-02-14 A | 822-PH-E-N-1070, 822-PH-E-N-1110, 822-PH-E-N-1150 | 100% | 2015-02-02 | 2015-02-04 |  |  |  |  | 822_AB_W11v4 |

| ID | WBS | Activity | Duration | Start | Finish | Predecessors | Complete | Planned start | Planned finish | 822_AB_W11v4 |
| --- | --- | --- | --- | --- | --- | --- | --- | --- | --- | --- |
|  | 1 | **E(N) OHVD slab (Group 1- CH126+070 to CH 126+063 - 500 th)** |  | 2014-07-26 | 2015-01-19 |  |  |  |  |  |
| 822-PH-E-N-1080 |  | Erect Megashore, Portal Beam and Soffit Formwork | 10d | 2014-07-26 A | 2014-08-18 A | 822-PH-E-N-1070 FS-1d | 100% | 2014-11-18 | 2014-11-28 | 822_AB_W11v4 |
| 822-PH-E-N-1090 |  | Rebar fixing and End Formwork to Slab | 3d | 2014-08-19 A | 2014-08-25 A | 822-PH-E-N-1080 | 100% | 2014-11-29 | 2014-12-02 | 822_AB_W11v4 |
| 822-PH-E-N-1100 |  | Concreting to Slab | 1d | 2014-08-25 A | 2014-08-25 A | 822-PH-E-N-1090 | 100% | 2014-12-03 | 2014-12-03 | 822_AB_W11v4 |
| 822-PH-E-N-1110 |  | Remove Megashore Portal Beam and Soffit Formwork | 13d | 2014-12-29 A | 2015-01-19 A | 822-PH-E-N-1100, 822-PH-E-N-1220 | 100% | 2015-01-02 | 2015-01-16 | 822_AB_W11v4 |
|  | 2 | **E(N) OHVD slab (Group 2 - CH126+063 to CH 126+052 - 1000 th)** |  | 2014-07-26 | 2015-01-19 |  |  |  |  |  |
| 822-PH-E-N-1120 |  | Erect Megashore, Portal Beam and Soffit Formwork | 14d | 2014-07-26 A | 2014-08-18 A | 822-PH-E-N-1070, 822-PH-E-N-1080 FS-2d | 100% | 2014-11-27 | 2014-12-12 | 822_AB_W11v4 |
| 822-PH-E-N-1130 |  | Rebar fixing and end formwork to Slab | 6d | 2014-08-19 A | 2014-08-25 A | 822-PH-E-N-1120 | 100% | 2014-12-13 | 2014-12-19 | 822_AB_W11v4 |
| 822-PH-E-N-1140 |  | Concreting to Slab | 1d | 2014-08-25 A | 2014-08-25 A | 822-PH-E-N-1130 | 100% | 2014-12-20 | 2014-12-20 | 822_AB_W11v4 |
| 822-PH-E-N-1150 |  | Remove Megashore Portal Beam and Soffit Formwork | 21d | 2014-12-29 A | 2015-01-19 A | 822-PH-E-N-1140, 822-PH-E-N-1180 | 100% | 2015-01-02 | 2015-01-26 | 822_AB_W11v4 |
|  | 6 | **Crown and Works above OHVD Slab** |  | 2014-08-08 | 2014-12-15 |  |  |  |  |  |
| 822-PH-E-N-1160 |  | Erect Megashore & portal beams for Section 1-2 | 14d | 2014-08-08 A | 2014-09-15 A | 822-PH-E-N-1070, 822-PH-E-N-1230 | 100% | 2014-11-28 | 2014-12-13 | 822_AB_W11v4 |
| 822-PH-E-N-1162 |  | Crown & Infill Lining Section 1-2 | 22d | 2014-08-08 A | 2014-09-27 A | 822-PH-E-N-1160 | 100% | 2014-12-15 | 2015-01-12 | 822_AB_W11v4 |
| 822-PH-E-N-1170 |  | E(N) - Infill and Partiion walls above OHVD Slabs -11.1m | 20d | 2014-08-26 A | 2014-09-23 A | 822-PH-E-N-1100, 822-PH-E-N-1140 | 100% | 2014-12-22 | 2015-01-16 | 822_AB_W11v4 |
| 822-PH-E-N-1200 |  | E(N) - Vertical Damper Wall at Section 8 | 12d | 2014-08-27 A | 2014-09-23 A | 822-PH-E-N-1190 | 100% | 2014-10-15 | 2014-10-28 | 822_AB_W11v4 |
| 822-PH-E-N-1190 |  | E(N) - Curved Slab -3.8m | 18d | 2014-09-15 A | 2014-10-11 A | 822-PH-E-N-1180 FS-16d, 822-PH-E-N-1164 FS-12d | 100% | 2014-10-09 | 2014-10-29 | 822_AB_W11v4 |
| 822-PH-E-N-1180 |  | E(N) - Infill and Crown Lining - 15.7m | 24d | 2014-09-23 A | 2014-11-27 A | 822-PH-E-N-1170 | 100% | 2014-10-23 | 2014-11-19 | 822_AB_W11v4 |
| 822-PH-E-N-1164 |  | Remove Megashore and portal beams | 16d | 2014-10-03 A | 2014-10-25 A | 822-PH-E-N-1162 FS+1d | 100% | 2014-11-04 | 2014-11-21 | 822_AB_W11v4 |
| 822-PH-E-N-1210 |  | E(N) - Section 8-10 Dividing Wall above OHVD Slab | 5d | 2014-11-01 A | 2014-11-20 A | 822-PH-E-N-1180 FS-10d | 100% | 2015-01-03 | 2015-01-08 | 822_AB_W11v4 |
| 822-PH-E-N-1220 |  | E(N) - Infill and Crown Lining - 7m | 10d | 2014-11-21 A | 2014-12-15 A | 822-PH-E-N-1210, 822-PH-E-N-1180 | 100% | 2015-01-15 | 2015-01-26 | 822_AB_W11v4 |
|  | 10 | **PH2A2 Junction** |  | 2014-03-17 | 2015-01-21 |  |  |  |  |  |
|  | 1 | **OHVD Slab Design and Fabrication** |  | 2014-04-28 | 2014-10-08 |  |  |  |  |  |
| 822-PH-2A2-1000 |  | Design of OHVD Slab formwork | 31d | 2014-04-28 A | 2014-07-22 A | 822-KD-SS-1000 SS | 100% | 2014-09-01 | 2014-10-09 | 822_AB_W11v4 |
| 822-PH-2A2-1010 |  | Fabrication of OHVD Slab Falsework/formwork F03 & F5a | 26d | 2014-10-02 A | 2014-10-08 A | 822-PH-2A2-1000 | 100% | 2014-11-01 | 2014-12-01 | 822_AB_W11v4 |

| ID | WBS | Activity | Duration | Start | Finish | Predecessors | Complete | Planned start | Planned finish | 822_AB_W11v4 |
| --- | --- | --- | --- | --- | --- | --- | --- | --- | --- | --- |
|  | 2 | **F03 (CH 126+092 - CH 126+101)** |  | 2014-04-22 | 2014-11-24 |  |  |  |  |  |
|  | 1 | **Crown Lining** |  | 2014-04-22 | 2014-08-02 |  |  |  |  |  |
| 822-PH-2A2-1020 |  | Crown Rebar fixing and removal of work platform | 10d | 2014-04-22 A | 2014-05-10 A | 822-KD-SS-1000 SS | 100% | 2014-09-01 | 2014-09-12 |  |
| 822-PH-2A2-1030 |  | Planning and preparations | 30d | 2014-05-11 A | 2014-06-18 A | 822-PH-2A2-1020 | 100% | 2014-09-13 | 2014-10-20 | 822_AB_W11v4 |
| 822-PH-2A2-1050 |  | Group 1 Crown Formwork | 8d | 2014-06-19 A | 2014-07-17 A | 822-PH-2A2-1020, 822-PH-2A2-1030 | 100% | 2014-10-21 | 2014-10-29 | 822_AB_W11v4 |
| 822-PH-2A2-1060 |  | Group 2 Crown Formwork | 8d | 2014-06-23 A | 2014-07-18 A | 822-PH-2A2-1050 FS-4d | 100% | 2014-10-25 | 2014-11-03 | 822_AB_W11v4 |
| 822-PH-2A2-1070 |  | Group 3 Crown Formwork | 8d | 2014-06-26 A | 2014-07-19 A | 822-PH-2A2-1060 FS-4d | 100% | 2014-10-30 | 2014-11-07 | 822_AB_W11v4 |
| 822-PH-2A2-1080 |  | Stop end scaffold + formwork and preparation | 6d | 2014-07-21 A | 2014-07-24 A | 822-PH-2A2-1070 | 100% | 2014-11-08 | 2014-11-14 | 822_AB_W11v4 |
| 822-PH-2A2-1090 |  | Crown concrete pour | 1d | 2014-07-25 A | 2014-07-25 A | 822-PH-2A2-1080 | 100% | 2014-11-15 | 2014-11-15 | 822_AB_W11v4 |
| 822-PH-2A2-1100 |  | Remove formwork and megashor | 8d | 2014-07-26 A | 2014-08-02 A | 822-PH-2A2-1090 | 100% | 2014-11-17 | 2014-11-25 | 822_AB_W11v4 |
|  | 2 | **OHVD Slab** |  | 2014-10-09 | 2014-11-24 |  |  |  |  |  |
| 822-PH-2A2-1110 |  | Erection/Assembly of Falsework/Formwork | 18d | 2014-10-09 A | 2014-10-31 A | 822-PH-2A2-1100, 822-PH-2A2-1010 | 100% | 2014-11-01 | 2014-11-21 | 822_AB_W11v4 |
| 822-PH-2A2-1120 |  | Rebar fixing and formwork erection | 4d | 2014-11-03 A | 2014-11-19 A | 822-PH-2A2-1110, 822-MT-F-OS-1010 | 100% | 2014-12-15 | 2014-12-18 | 822_AB_W11v4 |
| 822-PH-2A2-1130 |  | Concrete to OHVD Slab | 1d | 2014-11-20 A | 2014-11-20 A | 822-PH-2A2-1120 | 100% | 2014-12-19 | 2014-12-19 | 822_AB_W11v4 |
| 822-PH-2A2-1140 |  | Strip OHVD Slab form | 2d | 2014-11-21 A | 2014-11-24 A | 822-PH-2A2-1130 | 100% | 2014-12-20 | 2014-12-22 | 822_AB_W11v4 |
|  | 3 | **F04 (CH126+101 - CH 126+113 12m)** |  | 2014-03-17 | 2014-11-28 |  |  |  |  |  |
|  | 1 | **Wall** |  | 2014-03-17 | 2014-05-22 |  |  |  |  |  |
| 822-PH-2A2-1150 |  | Stop end scaffold and formwork | 9d | 2014-03-17 A | 2014-05-06 A | 822-KD-SS-1000 SS | 100% | 2014-09-01 | 2014-09-11 |  |
| 822-PH-2A2-1160 |  | Wall concrete | 1d | 2014-05-07 A | 2014-05-09 A | 822-PH-2A2-1150 | 100% | 2014-09-12 | 2014-09-12 |  |
| 822-PH-2A2-1170 |  | remove stop ends and wall forms | 10d | 2014-05-10 A | 2014-05-22 A | 822-PH-2A2-1160 | 100% | 2014-09-13 | 2014-09-24 |  |
|  | 2 | **Crown Lining** |  | 2014-06-14 | 2014-09-30 |  |  |  |  |  |
| 822-PH-2A2-1172 |  | W/P and scaffold for rebar | 11d | 2014-06-14 A | 2014-07-02 A | 822-PH-2A2-1170, 822-PH-2A2-1360 | 100% | 2014-10-20 | 2014-10-31 | 822_AB_W11v4 |
| 822-PH-2A2-1174 |  | Crown rebar fixing (include Type L lining collar) and removal of work platform | 23d | 2014-07-03 A | 2014-07-19 A | 822-PH-2A2-1172 | 100% | 2014-11-01 | 2014-11-27 | 822_AB_W11v4 |
| 822-PH-2A2-1190 |  | Delivery of new portal truss | 2d | 2014-07-24 A | 2014-07-24 A | 822-PH-2A2-1180 | 100% | 2014-12-01 | 2014-12-02 | 822_AB_W11v4 |
| 822-PH-2A2-1260 |  | Group 4 Crown Formwork | 4d | 2014-07-30 A | 2014-08-30 A | 822-PH-2A2-1250 | 100% | 2015-01-13 | 2015-01-16 | 822_AB_W11v4 |
| 822-PH-2A2-1180 |  | Move portal truss from F03 | 2d | 2014-08-02 A | 2014-08-02 A | 822-PH-2A2-1100, 822-PH-2A2-1174 | 100% | 2014-11-28 | 2014-11-29 | 822_AB_W11v4 |
| 822-PH-2A2-1210 |  | Install sheetpile decking/railing | 2d | 2014-08-07 A | 2014-08-08 A | 822-PH-2A2-1200 | 100% | 2014-12-12 | 2014-12-13 | 822_AB_W11v4 |
| 822-PH-2A2-1230 |  | Group 1 Crown Formwork | 6d | 2014-08-08 A | 2014-08-08 A | 822-PH-2A2-1210 | 100% | 2014-12-15 | 2014-12-20 | 822_AB_W11v4 |
| 822-PH-2A2-1200 |  | Connect portal truss from F03 & new truss | 8d | 2014-08-15 A | 2014-08-21 A | 822-PH-2A2-1190, 822-PH-2A2-1180 | 100% | 2014-12-03 | 2014-12-11 | 822_AB_W11v4 |
| 822-PH-2A2-1240 |  | Group 2 Crown Formwork | 9d | 2014-08-15 A | 2014-08-15 A | 822-PH-2A2-1230 | 100% | 2014-12-22 | 2015-01-03 | 822_AB_W11v4 |
| 822-PH-2A2-1250 |  | Group 3 Crown Formwork | 7d | 2014-08-15 A | 2014-08-15 A | 822-PH-2A2-1240 | 100% | 2015-01-05 | 2015-01-12 | 822_AB_W11v4 |
| 822-PH-2A2-1270 |  | Stop end scaffold, formwork (include Type L Collar) and preparation | 11d | 2014-08-16 A | 2014-09-04 A | 822-PH-2A2-1260 FS-2d | 100% | 2015-01-15 | 2015-01-27 | 822_AB_W11v4 |
| 822-PH-2A2-1280 |  | Crown concrete pour (include Type L Collar) | 1d | 2014-09-04 A | 2014-09-08 A | 822-PH-2A2-1270, 822-PH-2A2-1260 FS+2d | 100% | 2014-10-06 | 2014-10-06 | 822_AB_W11v4 |
| 822-PH-2A2-1290 |  | Remove formwork | 9d | 2014-09-09 A | 2014-09-30 A | 822-PH-2A2-1280 | 100% | 2014-10-07 | 2014-10-16 | 822_AB_W11v4 |

| ID | WBS | Activity | Duration | Start | Finish | Predecessors | Complete | Planned start | Planned finish | 822_AB_W11v4 |
| --- | --- | --- | --- | --- | --- | --- | --- | --- | --- | --- |
|  | 3 | **OHVD Slab** |  | 2014-11-21 | 2014-11-28 |  |  |  |  |  |
| 822-PH-2A2-1300 |  | Setting form | 2d | 2014-11-21 A | 2014-11-24 A | 822-PH-2A2-1290, 822-PH-2A2-1140 | 100% | 2014-12-23 | 2014-12-24 | 822_AB_W11v4 |
| 822-PH-2A2-1310 |  | Rebar fixing and formwork erection | 3d | 2014-11-24 A | 2014-11-25 A | 822-PH-2A2-1300 | 100% | 2014-12-27 | 2014-12-30 | 822_AB_W11v4 |
| 822-PH-2A2-1320 |  | Concrete to OHVD Slab | 1d | 2014-11-26 A | 2014-11-26 A | 822-PH-2A2-1310 | 100% | 2014-12-31 | 2014-12-31 | 822_AB_W11v4 |
| 822-PH-2A2-1330 |  | Removal of OHVD Slab form | 2d | 2014-11-27 A | 2014-11-28 A | 822-PH-2A2-1320 | 100% | 2015-01-02 | 2015-01-03 | 822_AB_W11v4 |
|  | 4 | **J02 (CH 126+113 - CH 126+127)** |  | 2014-04-28 | 2015-01-21 |  |  |  |  |  |
|  | 1 | **1st Wall** |  | 2014-04-28 | 2014-06-13 |  |  |  |  |  |
| 822-PH-2A2-1335 |  | Prepare to tram form | 6d | 2014-04-28 A | 2014-05-17 A | 822-PH-2A2-1170 | 100% | 2014-09-01 | 2014-09-06 |  |
| 822-PH-2A2-1340 |  | Tram Form, Connect F4 Wall and setting wall Form | 6d | 2014-05-19 A | 2014-06-04 A | 822-PH-2A2-1170, 822-PH-2A2-1335 | 100% | 2014-09-08 | 2014-09-15 | 822_AB_W11v4 |
| 822-PH-2A2-1350 |  | 1st Wall Concrete | 1d | 2014-06-05 A | 2014-06-05 A | 822-PH-2A2-1340 | 100% | 2014-09-16 | 2014-09-16 | 822_AB_W11v4 |
| 822-PH-2A2-1360 |  | Remove stop end form and mods wall form into F03 & F05A | 6d | 2014-06-06 A | 2014-06-13 A | 822-PH-2A2-1350 | 100% | 2014-09-17 | 2014-09-23 | 822_AB_W11v4 |
|  | 2 | **2nd Wall & End Walls** |  | 2014-07-12 | 2014-10-17 |  |  |  |  |  |
| 822-PH-2A2-1390 |  | scaffold for rebar tie anchor and 2nd wall & end walls rebar fixing | 19d | 2014-07-12 A | 2014-08-22 A | 822-PH-2A2-1360, 822-PH-2A2-1640 | 100% | 2014-11-10 | 2014-12-01 | 822_AB_W11v4 |
| 822-PH-2A2-1400 |  | 2nd Wall falsework & formwork (J2 to J5a) | 8d | 2014-09-15 A | 2014-10-11 A | 822-PH-2A2-1390, 822-PH-2A2-1384 | 100% | 2014-11-01 | 2014-11-10 | 822_AB_W11v4 |
| 822-PH-2A2-1440 |  | 2nd wall falsework & formwork (J2 to J4) | 7d | 2014-09-15 A | 2014-10-11 A | 822-PH-2A2-1384 | 100% | 2014-11-01 | 2014-11-08 | 822_AB_W11v4 |
| 822-PH-2A2-1820 |  | Erect RMD props & wall form (J2-F5a) | 10d | 2014-09-15 A | 2014-10-11 A | 822-PH-2A2-1810 | 100% | 2014-11-06 | 2014-11-17 | 822_AB_W11v4 |
| 822-PH-2A2-1370 |  | Shift Portal Truss from F04 to J02 | 2d | 2014-09-30 A | 2014-10-03 A | 822-PH-2A2-1290 | 100% | 2014-10-03 | 2014-10-04 | 822_AB_W11v4 |
| 822-PH-2A2-1810 |  | Shift portal truss from F05a to J02 & install decking | 4d | 2014-09-30 A | 2014-10-03 A | 822-PH-2A2-1730 | 100% | 2014-11-01 | 2014-11-05 | 822_AB_W11v4 |
| 822-PH-2A2-1380 |  | Install sheet pile decking/railing | 1d | 2014-10-03 A | 2014-10-04 A | 822-PH-2A2-1370 | 100% | 2014-11-03 | 2014-11-03 | 822_AB_W11v4 |
| 822-PH-2A2-1384 |  | Erect RMD props & wall form (J2 to J4) | 5d | 2014-10-04 A | 2014-10-11 A | 822-PH-2A2-1380, 822-PH-2A2-1820 | 100% | 2014-11-18 | 2014-11-22 | 822_AB_W11v4 |
| 822-PH-2A2-1420 |  | 2nd wall concrete (J2 to F5a) | 1d | 2014-10-13 A | 2014-10-13 A | 822-PH-2A2-1400 | 100% | 2014-12-03 | 2014-12-03 | 822_AB_W11v4 |
| 822-PH-2A2-1430 |  | Remove formwork 7 falsework (J2 to F5a) | 1d | 2014-10-13 A | 2014-10-17 A | 822-PH-2A2-1420 | 100% | 2014-12-04 | 2014-12-04 | 822_AB_W11v4 |
| 822-PH-2A2-1450 |  | 2nd wall concrete (J2 to J4) | 1d | 2014-10-13 A | 2014-10-13 A | 822-PH-2A2-1440 | 100% | 2014-12-02 | 2014-12-02 | 822_AB_W11v4 |
| 822-PH-2A2-1460 |  | Remove formwork & falsework (J2 to J4) | 1d | 2014-10-13 A | 2014-10-17 A | 822-PH-2A2-1450 | 100% | 2014-12-03 | 2014-12-03 | 822_AB_W11v4 |

| ID | WBS | Activity | Duration | Start | Finish | Predecessors | Complete | Planned start | Planned finish | 822_AB_W11v4 |
| --- | --- | --- | --- | --- | --- | --- | --- | --- | --- | --- |
|  | 3 | **Crown Lining** |  | 2014-07-14 | 2014-12-08 |  |  |  |  |  |
| 822-PH-2A2-1510 |  | W/P scaffold for rebar fixing | 11d | 2014-07-14 A | 2014-08-22 A | 822-PH-2A2-1390 FS-13d | 100% | 2014-11-17 | 2014-11-28 | 822_AB_W11v4 |
| 822-PH-2A2-1515 |  | Rebar to crown end walls | 14d | 2014-08-08 A | 2014-08-27 A | 822-PH-2A2-1510 | 100% | 2014-11-29 | 2014-12-15 | 822_AB_W11v4 |
| 822-PH-2A2-1530 |  | End Walls concrete first lift | 9d | 2014-08-08 A | 2014-08-13 A | 822-PH-2A2-1500, 822-PH-2A2-1520, 822-PH-2A2-1430 | 100% | 2015-01-31 | 2015-02-10 | 822_AB_W11v4 |
| 822-PH-2A2-1520 |  | Remove scaffold for rebar | 4d | 2014-08-28 A | 2014-09-30 A | 822-PH-2A2-1515 | 100% | 2014-12-16 | 2014-12-19 | 822_AB_W11v4 |
| 822-PH-2A2-1535 |  | End Walls concrete second lift | 9d | 2014-10-13 A | 2014-10-13 A | 822-PH-2A2-1530 | 100% | 2014-11-01 | 2014-11-11 | 822_AB_W11v4 |
| 822-PH-2A2-1537 |  | Remove end wall formwork and falsework | 4d | 2014-10-13 A | 2014-10-17 A | 822-PH-2A2-1535 | 100% | 2014-11-12 | 2014-11-15 | 822_AB_W11v4 |
| 822-PH-2A2-1490 |  | Erect Megashor Props and portal beams | 7d | 2014-10-17 A | 2014-10-24 A | 822-PH-2A2-1460 | 100% | 2014-12-04 | 2014-12-11 | 822_AB_W11v4 |
| 822-PH-2A2-1500 |  | Install sheetpile decking | 2d | 2014-10-20 A | 2014-10-21 A | 822-PH-2A2-1490 | 100% | 2014-12-12 | 2014-12-13 | 822_AB_W11v4 |
| 822-PH-2A2-1540 |  | Group 1 Crown formwork | 5d | 2014-10-21 A | 2014-10-25 A | 822-PH-2A2-1537 | 100% | 2014-11-01 | 2014-11-06 | 822_AB_W11v4 |
| 822-PH-2A2-1550 |  | Group 2 Crown formwork | 8d | 2014-10-27 A | 2014-11-05 A | 822-PH-2A2-1540 | 100% | 2014-11-04 | 2014-11-12 | 822_AB_W11v4 |
| 822-PH-2A2-1560 |  | Group 3 Crown formwork | 6d | 2014-11-06 A | 2014-11-08 A | 822-PH-2A2-1550 | 100% | 2014-12-19 | 2014-12-27 | 822_AB_W11v4 |
| 822-PH-2A2-1570 |  | Stop end scaffold formwork (include Type L) and preparation | 6d | 2014-11-10 A | 2014-11-16 A | 822-PH-2A2-1560 | 100% | 2014-12-29 | 2015-01-05 | 822_AB_W11v4 |
| 822-PH-2A2-1580 |  | Crown Lining concrete pour (include Type L collar) | 1d | 2014-11-17 A | 2014-11-17 A | 822-PH-2A2-1570 | 100% | 2015-01-06 | 2015-01-06 | 822_AB_W11v4 |
| 822-PH-2A2-1590 |  | Remove Stop end, crown, wall formwork and megashor | 16d | 2014-11-18 A | 2014-12-08 A | 822-PH-2A2-1580 | 100% | 2015-01-07 | 2015-01-24 | 822_AB_W11v4 |
|  | 4 | **OHVD Slab** |  | 2014-11-27 | 2015-01-21 |  |  |  |  |  |
| 822-PH-2A2-1600 |  | Set/ Extend OHVD Formwork - J02 | 3d | 2014-11-27 A | 2014-11-29 A | 822-PH-2A2-1590, 822-PH-2A2-1770 | 100% | 2015-01-26 | 2015-01-28 | 822_AB_W11v4 |
| 822-PH-2A2-1610 |  | Rebar fixing and formwork erection | 6d | 2014-12-01 A | 2014-12-11 A | 822-PH-2A2-1600 | 100% | 2015-01-29 | 2015-02-04 | 822_AB_W11v4 |
| 822-PH-2A2-1620 |  | Concrete to OHVD Slab (1st pour) | 1d | 2014-12-12 A | 2014-12-12 A | 822-PH-2A2-1610 | 100% | 2015-02-05 | 2015-02-05 | 822_AB_W11v4 |
| 822-PH-2A2-1630 |  | Strike and Dismantle OHVD Slab form | 11d | 2014-12-13 A | 2014-12-29 A | 822-PH-2A2-1620 FS+1d | 100% | 2015-02-07 | 2015-02-26 | 822_AB_W11v4 |
| 822-PH-2A2-1780 |  | 200mm thk wall (formwork, rebar fixing, concrete) | 8d | 2014-12-23 A | 2015-01-15 A |  | 100% | 2015-01-22 | 2015-01-30 | 822_AB_W11v4 |
| 822-PH-2A2-1790 |  | 300mm thk slab (falsework, formwork, rebar fixing, concrete) | 9d | 2015-01-02 A | 2015-01-10 A | 822-PH-2A2-1780 | 100% | 2015-01-23 | 2015-02-02 | 822_AB_W11v4 |
| 822-PH-2A2-1800 |  | Remove wall and slab formwork and falsework | 3d | 2015-01-16 A | 2015-01-21 A | 822-PH-2A2-1780, 822-PH-2A2-1790 | 100% | 2015-02-03 | 2015-02-05 | 822_AB_W11v4 |
|  | 5 | **F05A (CH 126+127 - CH 126+133)** |  | 2014-04-28 | 2014-12-30 |  |  |  |  |  |
|  | 1 | **Crown Lining** |  | 2014-04-28 | 2014-09-13 |  |  |  |  |  |
| 822-PH-2A2-1655 |  | Planning and preparations | 16d | 2014-04-28 A | 2014-05-10 A | 822-KD-SS-1000 | 100% | 2014-09-01 | 2014-09-19 |  |
| 822-PH-2A2-1660 |  | Work platform and scaffold for rebar | 20d | 2014-05-10 A | 2014-06-07 A | 822-PH-2A2-1655 | 100% | 2014-09-20 | 2014-10-15 | 822_AB_W11v4 |
| 822-PH-2A2-1670 |  | Crown rebar fixing | 14d | 2014-06-17 A | 2014-06-30 A | 822-PH-2A2-1660 | 100% | 2014-10-16 | 2014-10-31 | 822_AB_W11v4 |
| 822-PH-2A2-1680 |  | Remove scaffold for rebar | 3d | 2014-07-02 A | 2014-07-03 A | 822-PH-2A2-1670 | 100% | 2014-11-01 | 2014-11-04 | 822_AB_W11v4 |
| 822-PH-2A2-1640 |  | Shifting portal truss after J02 1st wall pour | 4d | 2014-07-08 A | 2014-07-12 A | 822-PH-2A2-1360, 822-PH-2A2-1680 | 100% | 2014-11-05 | 2014-11-08 | 822_AB_W11v4 |
| 822-PH-2A2-1690 |  | Group 1 Crown Formwork | 5d | 2014-07-11 A | 2014-08-02 A | 822-PH-2A2-1650, 822-PH-2A2-1680 | 100% | 2014-11-12 | 2014-11-17 | 822_AB_W11v4 |
| 822-PH-2A2-1650 |  | Install sheetpile decking | 2d | 2014-07-14 A | 2014-07-21 A | 822-PH-2A2-1640 | 100% | 2014-11-10 | 2014-11-11 | 822_AB_W11v4 |
| 822-PH-2A2-1700 |  | Group 2 Crown Formwork | 5d | 2014-07-17 A | 2014-08-02 A | 822-PH-2A2-1690 | 100% | 2014-11-18 | 2014-11-22 | 822_AB_W11v4 |
| 822-PH-2A2-1710 |  | Stop end scaffold and formwork and preparation | 9d | 2014-07-30 A | 2014-08-07 A | 822-PH-2A2-1700 | 100% | 2014-11-24 | 2014-12-03 | 822_AB_W11v4 |
| 822-PH-2A2-1720 |  | Crown concrete pour | 1d | 2014-08-08 A | 2014-08-08 A | 822-PH-2A2-1710 | 100% | 2014-12-04 | 2014-12-04 | 822_AB_W11v4 |
| 822-PH-2A2-1730 |  | Remove formwork | 9d | 2014-08-13 A | 2014-09-13 A | 822-PH-2A2-1720 | 100% | 2014-12-05 | 2014-12-15 | 822_AB_W11v4 |

| ID | WBS | Activity | Duration | Start | Finish | Predecessors | Complete | Planned start | Planned finish | 822_AB_W11v4 |
| --- | --- | --- | --- | --- | --- | --- | --- | --- | --- | --- |
|  | 2 | **OHVD Slab (F05A&B)** |  | 2014-12-15 | 2014-12-30 |  |  |  |  |  |
| 822-PH-2A2-1750 |  | Set/Extend OHVD Formwork - F05A (8m) | 4d | 2014-12-15 A | 2014-12-16 A | 822-PH-2A2-1745 | 100% | 2015-01-10 | 2015-01-14 | 822_AB_W11v4 |
| 822-PH-2A2-1752 |  | Rebar fixing - F05A (8m) | 2d | 2014-12-16 A | 2014-12-17 A | 822-PH-2A2-1750 | 100% | 2015-01-15 | 2015-01-16 | 822_AB_W11v4 |
| 822-PH-2A2-1753 |  | Formwork Erection - F05A (8m) | 1d | 2014-12-17 A | 2014-12-17 A | 822-PH-2A2-1752 | 100% | 2015-01-17 | 2015-01-17 | 822_AB_W11v4 |
| 822-PH-2A2-1760 |  | concrete to OHVD Slab - F05A (8m) | 1d | 2014-12-18 A | 2014-12-18 A | 822-PH-2A2-1750, 822-PH-2A2-1753 | 100% | 2015-01-19 | 2015-01-19 | 822_AB_W11v4 |
| 822-PH-2A2-1740 |  | Set OHVD Formwork - F05B (12m) | 2d | 2014-12-19 A | 2014-12-20 A | 822-PH-2A2-1730, 822-MT-F-OS-1020 | 100% | 2015-01-02 | 2015-01-03 | 822_AB_W11v4 |
| 822-PH-2A2-1770 |  | Strike OHVD slab form - F05A (8m) | 2d | 2014-12-19 A | 2014-12-20 A | 822-PH-2A2-1760, 822-PH-2A2-1760 FF | 100% | 2015-01-20 | 2015-01-21 | 822_AB_W11v4 |
| 822-PH-2A2-1742 |  | Rebar Fixing - F05B (12m) | 2d | 2014-12-20 A | 2014-12-21 A | 822-PH-2A2-1740 | 100% | 2015-01-05 | 2015-01-06 | 822_AB_W11v4 |
| 822-PH-2A2-1743 |  | Formwork Erection - F05B (12m) | 1d | 2014-12-22 A | 2014-12-22 A | 822-PH-2A2-1742 | 100% | 2015-01-07 | 2015-01-07 | 822_AB_W11v4 |
| 822-PH-2A2-1744 |  | Concrete to OHVD Slab - F05B (12m) | 1d | 2014-12-23 A | 2014-12-23 A | 822-PH-2A2-1743 | 100% | 2015-01-08 | 2015-01-08 | 822_AB_W11v4 |
| 822-PH-2A2-1745 |  | Strike OHVD Formwork - F05B (12m) | 1d | 2014-12-27 A | 2014-12-30 A | 822-PH-2A2-1744 | 100% | 2015-01-09 | 2015-01-09 | 822_AB_W11v4 |
|  | 11 | **Type E (South) Nozzle** |  | 2014-04-28 | 2015-01-17 |  |  |  |  |  |
|  | 3 | **Lining - Walls** |  | 2014-04-28 | 2014-06-11 |  |  |  |  |  |
| 822-PH-E-S-1000 |  | E(S) - Lining Wall (Group 2 - 7.2m) | 40d | 2014-04-28 A | 2014-06-11 A | 822-KD-SS-1000 SS | 100% | 2014-09-01 | 2014-10-20 | 822_AB_W11v4 |
|  | 4 | **Lower Centre Wall** |  | 2014-06-16 | 2015-01-17 |  |  |  |  |  |
| 822-PH-E-S-1010 |  | E(S) - Dividing Wall (Group 1 - 14.2m 300thk 7.418m H) | 10d | 2014-06-16 A | 2014-07-08 A | 822-PH-E-S-1000 | 100% | 2014-10-21 | 2014-10-31 | 822_AB_W11v4 |
| 822-PH-E-S-1020 |  | E(S) - Dividing Wall (Group 2 - 4.4m 300 thk 7.918mH) | 10d | 2014-06-23 A | 2014-07-08 A | 822-PH-E-S-1010 FS-2d | 100% | 2014-10-30 | 2014-11-10 | 822_AB_W11v4 |
| 822-PH-E-S-1030 |  | E(S) - Dividing Wall (Group 3 - 9.1m 300 thk 8.8mH) | 10d | 2014-06-30 A | 2014-07-08 A | 822-PH-E-S-1010, 822-PH-E-S-1000 | 100% | 2014-11-01 | 2014-11-12 | 822_AB_W11v4 |
| 822-PH-E-S-1040 |  | E(S) - Partial Derailment Kerb and Walkway | 3d | 2014-07-09 A | 2014-07-12 A | 822-PH-E-S-1010 FS-2d, 822-PH-E-S-1020 FS-2d, 822-PH-E-S-1030 | 100% | 2014-11-13 | 2014-11-15 | 822_AB_W11v4 |
| 822-PH-E-S-1200 |  | E(S) - Remaining Derailment Kerb and Walkway (after megashor and portal beam removal) | 3d | 2014-12-29 A | 2015-01-17 A | 822-PH-E-S-1040, 822-PH-E-S-1080 | 100% | 2015-01-02 | 2015-01-05 | 822_AB_W11v4 |
|  | 1 | **E(S) OHVD Slab (Group 1 - CH126+811 to CH126+818 - 500 th)** |  | 2014-07-12 | 2014-11-28 |  |  |  |  |  |
| 822-PH-E-S-1050 |  | Erect Megashor + Portal Beam and Soffit Formwork | 10d | 2014-07-12 A | 2014-08-09 A | 822-PH-E-S-1040 FS-1d | 100% | 2014-11-15 | 2014-11-26 | 822_AB_W11v4 |
| 822-PH-E-S-1060 |  | Rebar fixing and End Formwork to Slab | 3d | 2014-08-04 A | 2014-08-09 A | 822-PH-E-S-1050 | 100% | 2014-11-27 | 2014-11-29 | 822_AB_W11v4 |
| 822-PH-E-S-1070 |  | Concreting to Slab | 1d | 2014-08-11 A | 2014-08-11 A | 822-PH-E-S-1060 | 100% | 2014-12-01 | 2014-12-01 | 822_AB_W11v4 |
| 822-PH-E-S-1080 |  | Remove Megashor Portal Beam and Soffit Formwork | 15d | 2014-11-24 A | 2014-11-28 A | 822-PH-E-S-1190 | 100% | 2015-01-09 | 2015-01-26 | 822_AB_W11v4 |

| ID | WBS | Activity | Duration | Start | Finish | Predecessors | Complete | Planned start | Planned finish | 822_AB_W11v4 |
| --- | --- | --- | --- | --- | --- | --- | --- | --- | --- | --- |
|  | 2 | **E(S) OHVD Slab (Group 2 - CH126+818 to CH126+829 - 1000 th)** |  | 2014-07-12 | 2014-12-20 |  |  |  |  |  |
| 822-PH-E-S-1090 |  | Erect Megashor, Portal Beam and Soffit Formwork | 21d | 2014-07-12 A | 2014-08-09 A | 822-PH-E-S-1050 FS-2d | 100% | 2014-11-25 | 2014-12-18 | 822_AB_W11v4 |
| 822-PH-E-S-1100 |  | Rebar fixing and End Formwork to Slab | 6d | 2014-08-04 A | 2014-08-09 A | 822-PH-E-S-1090 | 100% | 2014-12-19 | 2014-12-27 | 822_AB_W11v4 |
| 822-PH-E-S-1110 |  | Concreting to Slab | 1d | 2014-08-11 A | 2014-08-11 A | 822-PH-E-S-1100 | 100% | 2014-12-29 | 2014-12-29 | 822_AB_W11v4 |
| 822-PH-E-S-1120 |  | Remove Megashor Portal Beam and Soffit Formwork | 24d | 2014-11-24 A | 2014-12-20 A | 822-PH-E-S-1150 | 100% | 2014-12-24 | 2015-01-23 | 822_AB_W11v4 |
|  | 5 | **Crown and Works above OHVD Slab** |  | 2014-07-12 | 2014-11-22 |  |  |  |  |  |
| 822-PH-E-S-1130 |  | Erect Megashore & portal beams for Section 1-2 | 14d | 2014-07-12 A | 2014-08-09 A | 822-PH-E-S-1040, 822-PH-E-S-1200 | 100% | 2014-11-17 | 2014-12-02 | 822_AB_W11v4 |
| 822-PH-E-S-1132 |  | Crown & Infill Lining Section 1-2 | 22d | 2014-07-12 A | 2014-09-15 A | 822-PH-E-S-1130 | 100% | 2014-12-03 | 2014-12-30 | 822_AB_W11v4 |
| 822-PH-E-S-1140 |  | E(S) - Infill and Partition walls above OHVD Slabs -11.1m | 20d | 2014-08-12 A | 2014-09-10 A | 822-PH-E-S-1110 | 100% | 2014-12-30 | 2015-01-22 | 822_AB_W11v4 |
| 822-PH-E-S-1170 |  | E(S) - Vertical Damper Wall at Section 8 | 12d | 2014-08-12 A | 2014-09-10 A | 822-PH-E-S-1160 | 100% | 2014-10-14 | 2014-10-27 | 822_AB_W11v4 |
| 822-PH-E-S-1160 |  | E(S) - Infill and Crown Lining - 3.8m | 24d | 2014-08-23 A | 2014-10-10 A | 822-PH-E-S-1134 FS-9d | 100% | 2014-10-03 | 2014-10-30 | 822_AB_W11v4 |
| 822-PH-E-S-1150 |  | E(S) - Infill and Crown Lining - 15.7m | 22d | 2014-09-10 A | 2014-11-10 A | 822-PH-E-S-1140 | 100% | 2014-10-16 | 2014-11-10 | 822_AB_W11v4 |
| 822-PH-E-S-1134 |  | Remove Megashore and portal beams | 16d | 2014-10-03 A | 2014-10-13 A | 822-PH-E-S-1132 FS+1d | 100% | 2014-10-25 | 2014-11-12 | 822_AB_W11v4 |
| 822-PH-E-S-1180 |  | E(S) - Section 8-10 Dividing Wall above OHVD Slab | 18d | 2014-10-10 A | 2014-10-23 A | 822-PH-E-S-1170 | 100% | 2014-11-13 | 2014-12-03 | 822_AB_W11v4 |
| 822-PH-E-S-1190 |  | E(S) - Infill and Crown Lining - 7m | 11d | 2014-10-23 A | 2014-11-22 A | 822-PH-E-S-1150 | 100% | 2014-12-24 | 2015-01-08 | 822_AB_W11v4 |
|  | 12 | **Type P Nozzle** |  | 2014-04-28 | 2014-11-28 |  |  |  |  |  |
|  | 1 | **Side Walls** |  | 2014-04-28 | 2014-05-29 |  |  |  |  |  |
| 822-SY-P-1010 |  | P02 side walls chg 130925-130935 | 5d | 2014-04-28 A | 2014-05-04 A | 822-KD-SS-1000 SS | 100% | 2014-09-01 | 2014-09-05 |  |
| 822-SY-P-1020 |  | P03 side walls chg 130917-130925 | 4d | 2014-05-05 A | 2014-05-07 A | 822-SY-P-1010 | 100% | 2014-09-06 | 2014-09-11 |  |
| 822-SY-P-1030 |  | P03A side walls chg 130908-130917 | 5d | 2014-05-08 A | 2014-05-10 A | 822-SY-P-1020, 822-SY-P-1040 | 100% | 2014-09-18 | 2014-09-23 |  |
| 822-SY-P-1040 |  | P04 DT side wall chg 130899-130908 | 9d | 2014-05-12 A | 2014-05-27 A | 822-SY-P-1010 | 100% | 2014-09-06 | 2014-09-17 |  |
| 822-SY-P-1050 |  | P04 UT side wall chg 130899-130908 | 9d | 2014-05-13 A | 2014-05-29 A | 822-SY-P-1040, 822-SY-P-1030 | 100% | 2014-09-24 | 2014-10-06 |  |
|  | 2 | **Centre Dividing Wall** |  | 2014-05-30 | 2014-11-21 |  |  |  |  |  |
| 822-SY-P-1090 |  | P3 centre wall | 9d | 2014-05-30 A | 2014-06-07 A | 822-SY-P-1050 FS-3d | 100% | 2014-10-03 | 2014-10-13 | 822_AB_W11v4 |
| 822-SY-P-1060 |  | P03A centre wall | 9d | 2014-06-08 A | 2014-06-10 A | 822-SY-P-1030, 822-SY-P-1090 FS-5d | 100% | 2014-10-08 | 2014-10-17 | 822_AB_W11v4 |
| 822-SY-P-1070 |  | P04 centre wall | 11d | 2014-06-11 A | 2014-06-23 A | 822-SY-P-1060, 822-SY-P-1090 | 100% | 2014-10-18 | 2014-10-30 | 822_AB_W11v4 |
| 822-SY-P-1080 |  | P02 centre wall | 9d | 2014-06-23 A | 2014-07-05 A | 822-SY-P-1070, 822-MT-MS-L-1010 | 100% | 2014-10-31 | 2014-11-10 | 822_AB_W11v4 |
| 822-SY-P-1100 |  | P1 centre wall | 9d | 2014-07-04 A | 2014-07-11 A | 822-SY-P-1080 | 100% | 2014-11-11 | 2014-11-20 | 822_AB_W11v4 |
| 822-SY-P-1220 |  | Interface Centre wall with Type M | 7d | 2014-11-17 A | 2014-11-21 A | 822-SY-P-1185 FS+6d | 100% | 2014-12-31 | 2015-01-08 | 822_AB_W11v4 |

| ID | WBS | Activity | Duration | Start | Finish | Predecessors | Complete | Planned start | Planned finish | 822_AB_W11v4 |
| --- | --- | --- | --- | --- | --- | --- | --- | --- | --- | --- |
|  | 3 | **OHVD Slab** |  | 2014-06-21 | 2014-09-03 |  |  |  |  |  |
| 822-SY-P-1130 |  | Lining and 500th OHVD Slab (P03A-P04) | 25d | 2014-06-21 A | 2014-07-28 A | 822-SY-P-1050, 822-SY-P-1070 | 100% | 2014-10-31 | 2014-11-28 | 822_AB_W11v4 |
| 822-SY-P-1140 |  | P03 OHVD slab | 9d | 2014-07-19 A | 2014-08-06 A | 822-SY-P-1130 FS-2d, 822-SY-P-1090 | 100% | 2014-11-27 | 2014-12-06 | 822_AB_W11v4 |
| 822-SY-P-1120 |  | P01 OHVD slab | 9d | 2014-08-06 A | 2014-08-14 A | 822-SY-P-1100, 822-SY-P-1130 FS-3d | 100% | 2014-11-26 | 2014-12-05 | 822_AB_W11v4 |
| 822-SY-P-1110 |  | P02 OHVD slab | 9d | 2014-08-30 A | 2014-09-03 A | 822-SY-P-1080, 822-SY-P-1140 FS+2d, 822-SY-P-1120 FS+2d | 100% | 2014-12-10 | 2014-12-19 | 822_AB_W11v4 |
|  | 4 | **End Wall & Lining** |  | 2014-05-21 | 2014-10-22 |  |  |  |  |  |
| 822-SY-P-1150 |  | End wall at chg 130944 | 12d | 2014-05-21 A | 2014-06-05 A | 822-SY-P-1050 | 100% | 2014-10-07 | 2014-10-20 | 822_AB_W11v4 |
| 822-SY-P-1160 |  | P01 lining | 18d | 2014-08-20 A | 2014-10-22 A | 822-SY-P-1150, 822-SY-P-1120 | 100% | 2014-12-06 | 2014-12-29 | 822_AB_W11v4 |
| 822-SY-P-1180 |  | P03 lining | 18d | 2014-08-21 A | 2014-09-15 A | 822-SY-P-1140 | 100% | 2014-12-08 | 2014-12-30 | 822_AB_W11v4 |
| 822-SY-P-1170 |  | P02 lining | 18d | 2014-09-01 A | 2014-10-16 A | 822-SY-P-1110 | 100% | 2014-10-10 | 2014-10-30 | 822_AB_W11v4 |
|  | 5 | **Internal Structures** |  | 2014-10-25 | 2014-11-26 |  |  |  |  |  |
| 822-SY-P-1185 |  | Bay P1 & P2 Falsework Removal | 10d | 2014-10-25 A | 2014-11-08 A | 822-SY-P-1160, 822-SY-P-1170 | 100% | 2014-11-01 | 2014-11-12 | 822_AB_W11v4 |
| 822-SY-P-1190 |  | Nozzle structure | 13d | 2014-11-10 A | 2014-11-20 A | 822-SY-P-1185 | 100% | 2014-12-22 | 2015-01-08 | 822_AB_W11v4 |
| 822-SY-P-1200 |  | P01 OHVD wall | 15d | 2014-11-17 A | 2014-11-22 A | 822-SY-P-1185 | 100% | 2014-12-22 | 2015-01-10 | 822_AB_W11v4 |
| 822-SY-P-1210 |  | P02 OHVD wall | 12d | 2014-11-22 A | 2014-11-26 A | 822-SY-P-1170, 822-SY-P-1200 FF | 100% | 2014-12-27 | 2015-01-10 | 822_AB_W11v4 |
|  | 6 | **Removal of Temporary Works** |  | 2014-07-29 | 2014-11-08 |  |  |  |  |  |
| 822-SY-P-1230 |  | Dismantle formwork and steel deck for P04 | 6d | 2014-07-29 A | 2014-08-07 A | 822-SY-P-1130 FS+6d | 100% | 2014-09-01 | 2014-09-06 | 822_AB_W11v4 |
| 822-SY-P-1240 |  | Dismantle formwork and steel deck for P03A | 6d | 2014-09-01 A | 2014-09-10 A | 822-SY-P-1130 FS+6d | 100% | 2014-10-03 | 2014-10-09 | 822_AB_W11v4 |
| 822-SY-P-1260 |  | Dismantle formwork and steel deck for P02 | 6d | 2014-09-15 A | 2014-10-31 A | 822-SY-P-1210, 822-SY-P-1170 FS+6d | 100% | 2014-10-23 | 2014-10-29 | 822_AB_W11v4 |
| 822-SY-P-1270 |  | Dismantle formwork and steel deck for P01 | 6d | 2014-09-15 A | 2014-11-08 A | 822-SY-P-1160 FS+6d | 100% | 2014-10-28 | 2014-11-03 | 822_AB_W11v4 |
| 822-SY-P-1250 |  | Dismantle formwork and steel deck for P03 | 6d | 2014-09-18 A | 2014-09-23 A | 822-SY-P-1180 FS+6d | 100% | 2014-10-14 | 2014-10-20 | 822_AB_W11v4 |
|  | 7 | **Walkways and Derailment Kerbs** |  | 2014-09-22 | 2014-11-28 |  |  |  |  |  |
| 822-SY-P-1280 |  | Evacuation walkways | 6d | 2014-09-22 A | 2014-11-27 A | 822-SY-P-1250, 822-SY-P-1260, 822-SY-P-1270, 822-SY-P-1230, 822-SY-P-1240, 822-SY-P-1190 | 100% | 2014-10-10 | 2014-10-16 | 822_AB_W11v4 |
| 822-SY-P-1290 |  | Side access walkways | 6d | 2014-09-22 A | 2014-11-27 A | 822-SY-P-1280 | 100% | 2014-10-13 | 2014-10-18 | 822_AB_W11v4 |
| 822-SY-P-1300 |  | Derailment kerbs | 6d | 2014-09-22 A | 2014-11-28 A | 822-SY-P-1280 | 100% | 2014-10-13 | 2014-10-18 | 822_AB_W11v4 |

| ID | WBS | Activity | Duration | Start | Finish | Predecessors | Complete | Planned start | Planned finish | 822_AB_W11v4 | TimeChainage |
| --- | --- | --- | --- | --- | --- | --- | --- | --- | --- | --- | --- |
|  | 13 | **SM2A2 Junction** |  | 2014-04-28 | 2014-11-27 |  |  |  |  |  |  |
|  | 1 | **Junction Lining** |  | 2014-04-28 | 2014-08-22 |  |  |  |  |  |  |
| 822-SM-2A2-0100 |  | Mobilise | 23d | 2014-04-28 A | 2014-05-26 A | 822-KD-SS-1000 SS | 100% | 2014-09-01 | 2014-09-27 |  |  |
| 822-SM-2A2-1010 |  | Waterproofing to Bays 1 2 and 3 | 8d | 2014-05-05 A | 2014-06-13 A | 822-SM-2A2-1000 FS-1d | 100% | 2014-10-28 | 2014-11-05 | 822_AB_W11v4 |  |
| 822-SM-2A2-1000 |  | Steel decking and 4th end wall | 24d | 2014-05-19 A | 2014-06-25 A | 822-SM-2A2-0100 | 100% | 2014-09-29 | 2014-10-28 | 822_AB_W11v4 |  |
| 822-SM-2A2-1020 |  | Steel fixing to Bay 3 | 10d | 2014-07-07 A | 2014-07-16 A | 822-SM-2A2-1010 | 100% | 2014-11-06 | 2014-11-17 | 822_AB_W11v4 |  |
| 822-SM-2A2-1022 |  | Steel fixing to bay 2 | 8d | 2014-07-10 A | 2014-07-17 A | 822-SM-2A2-1020 FS-4d | 100% | 2014-11-13 | 2014-11-21 | 822_AB_W11v4 |  |
| 822-SM-2A2-1024 |  | Modify scaffolding for N shutter | 2d | 2014-07-17 A | 2014-07-17 A | 822-SM-2A2-1022 FS+1d | 100% | 2014-11-24 | 2014-11-25 | 822_AB_W11v4 |  |
| 822-SM-2A2-1026 |  | Re-erect scaffold for steel fixing | 3d | 2014-07-19 A | 2014-07-22 A | 822-SM-2A2-1024 FS+1d | 100% | 2014-11-27 | 2014-11-29 | 822_AB_W11v4 |  |
| 822-SM-2A2-1035 |  | Bay 3 crown lining | 6d | 2014-07-19 A | 2014-07-30 A | 822-SM-EAP-L-1030, 822-SM-2A2-1020, 822-SM-2A2-1024 | 100% | 2014-11-26 | 2014-12-02 | 822_AB_W11v4 |  |
| 822-SM-2A2-1028 |  | Steel fixing to bay 1 | 8d | 2014-07-23 A | 2014-07-31 A | 822-SM-2A2-1026 FS-1d | 100% | 2014-11-29 | 2014-12-08 | 822_AB_W11v4 |  |
| 822-SM-2A2-1030 |  | Dismantle steel fixing scaffold | 3d | 2014-08-01 A | 2014-08-04 A | 822-SM-2A2-1028 | 100% | 2014-12-09 | 2014-12-11 | 822_AB_W11v4 |  |
| 822-SM-2A2-1040 |  | Bay 2 crown lining | 6d | 2014-08-02 A | 2014-08-06 A | 822-SM-2A2-1035, 822-SM-2A2-1022 | 100% | 2014-12-03 | 2014-12-09 | 822_AB_W11v4 |  |
| 822-SM-2A2-1050 |  | Bay 1 crown lining | 6d | 2014-08-08 A | 2014-08-12 A | 822-SM-2A2-1040, 822-SM-2A2-1028 | 100% | 2014-12-10 | 2014-12-16 | 822_AB_W11v4 |  |
| 822-SM-2A2-1060 |  | Dismantle N shutter | 8d | 2014-08-14 A | 2014-08-22 A | 822-SM-2A2-1050 | 100% | 2014-12-17 | 2014-12-27 | 822_AB_W11v4 |  |
|  | 4 | **Junction Internal Structures** |  | 2014-08-23 | 2014-11-27 |  |  |  |  |  |  |
| 822-SM-2A2-JIS-1000 |  | Decking and formwork for OHVD in junction | 6d | 2014-08-23 A | 2014-09-01 A | 822-SM-2A2-1060 FS-2d | 100% | 2014-12-24 | 2015-01-02 | 822_AB_W11v4 |  |
| 822-SM-2A2-JIS-1010 |  | OHVD slab in junction | 6d | 2014-08-29 A | 2014-09-06 A | 822-SM-2A2-JIS-1000 | 100% | 2014-09-05 | 2014-09-12 | 822_AB_W11v4 |  |
| 822-SM-2A2-JIS-1020 |  | Dismantle decking | 6d | 2014-09-10 A | 2014-09-17 A | 822-SM-2A2-JIS-1010 | 100% | 2014-10-10 | 2014-10-16 | 822_AB_W11v4 |  |
| 822-MT-2A2-JIS-1040 |  | Type M Centre wall chg 132064-132033 (bays 0-2) | 6d | 2014-09-18 A | 2014-09-28 A | 822-SM-2A2-JIS-1030 FS-2d | 100% | 2014-10-22 | 2014-10-28 | 822_AB_W11v4 | 01 |
| 822-MT-2A2-JIS-1050 |  | Type M Walkways & derailment kerb DT chg 132064-132033 | 5d | 2014-09-28 A | 2014-09-30 A | 822-MT-2A2-JIS-1040 FS-2d | 100% | 2014-10-27 | 2014-10-31 | 822_AB_W11v4 | 01 |
| 822-SM-2A2-JIS-1060 |  | Walkways and derailment kerbs in junction | 18d | 2014-09-28 A | 2014-11-27 A | 822-SM-2A2-JIS-1030 | 100% | 2014-10-21 | 2014-11-10 | 822_AB_W11v4 |  |
| 822-MT-2A2-JIS-1070 |  | Type M Walkways & derailment kerb UT chg 132064-132033 | 5d | 2014-10-21 A | 2014-11-27 A | 822-MT-2A2-JIS-1050 | 100% | 2014-11-06 | 2014-11-11 | 822_AB_W11v4 | 01 |
| 822-SM-2A2-JIS-1030 |  | Centre wall in junction | 19d | 2014-11-03 A | 2014-11-11 A | 822-SM-2A2-JIS-1020, 822-SM-2A2-JIS-1010 | 100% | 2014-12-15 | 2015-01-08 | 822_AB_W11v4 |  |
| 822-SM-2A2-JIS-1035 |  | OHVD Wall in junction | 11d | 2014-11-22 A | 2014-11-26 A | 822-SM-2A2-JIS-1030 FS-6d | 100% | 2015-01-02 | 2015-01-14 | 822_AB_W11v4 |  |

| ID | WBS | Activity | Duration | Start | Finish | Predecessors | Complete | Planned start | Planned finish | 822_AB_W11v4 |
| --- | --- | --- | --- | --- | --- | --- | --- | --- | --- | --- |
|  | 2 | **Transition Zone Lining** |  | 2014-05-05 | 2014-11-05 |  |  |  |  |  |
| 822-SM-2A2-T-1000 |  | Side walls Lift 1 (3.6m high) | 12d | 2014-05-05 A | 2014-05-23 A | 822-SM-2A2-0100 | 100% | 2014-09-01 | 2014-09-15 |  |
| 822-SM-2A2-T-1030 |  | W/P for transition crown | 8d | 2014-05-05 A | 2014-06-13 A | 822-SM-2A2-T-1020 FS+4d, 822-SM-2A2-1024 | 100% | 2014-10-21 | 2014-10-29 | 822_AB_W11v4 |
| 822-SM-2A2-T-1010 |  | Side walls Lift 2 (3.6m high) | 12d | 2014-08-13 A | 2014-09-24 A | 822-SM-2A2-T-1000 | 100% | 2014-09-16 | 2014-09-29 | 822_AB_W11v4 |
| 822-SM-2A2-T-1040 |  | Steel fix for crown | 8d | 2014-09-15 A | 2014-10-24 A | 822-SM-2A2-T-1030 | 100% | 2014-10-22 | 2014-10-30 | 822_AB_W11v4 |
| 822-SM-2A2-T-1020 |  | Side walls Lift 3 (3.6m high) | 12d | 2014-09-29 A | 2014-10-25 A | 822-SM-2A2-T-1010 | 100% | 2014-10-16 | 2014-10-29 | 822_AB_W11v4 |
| 822-SM-2A2-T-1042 |  | Modify falsework | 4d | 2014-09-30 A | 2014-10-24 A | 822-SM-2A2-T-1040 | 100% | 2014-10-20 | 2014-10-23 | 822_AB_W11v4 |
| 822-SM-2A2-T-1044 |  | Formwork for crown | 12d | 2014-09-30 A | 2014-10-24 A | 822-SM-2A2-T-1042 | 100% | 2014-10-24 | 2014-11-06 | 822_AB_W11v4 |
| 822-SM-2A2-T-1046 |  | Concrete crown | 2d | 2014-10-25 A | 2014-10-28 A | 822-SM-2A2-T-1044 | 100% | 2014-11-27 | 2014-11-28 | 822_AB_W11v4 |
| 822-SM-2A2-T-1050 |  | Dismantle formwork and falsework to crown | 6d | 2014-10-29 A | 2014-11-01 A | 822-SM-2A2-T-1046 | 100% | 2014-11-01 | 2014-11-07 | 822_AB_W11v4 |
| 822-SM-2A2-T-1060 |  | Invert slab to Transition Zone | 2d | 2014-11-03 A | 2014-11-05 A | 822-SM-2A2-T-1050 | 100% | 2014-12-17 | 2014-12-18 | 822_AB_W11v4 |
|  | 3 | **Transition Zone Internal Structures** |  | 2014-08-21 | 2014-11-26 |  |  |  |  |  |
| 822-SM-2A2-TIS-1000 |  | Falsework for walls below OHVD in transition zone | 6d | 2014-08-21 A | 2014-11-01 A | 822-SM-2A2-T-1046 | 100% | 2014-12-16 | 2014-12-22 | 822_AB_W11v4 |
| 822-SM-2A2-TIS-1004 |  | Formwork and concrete walls below OHVD | 7d | 2014-08-22 A | 2014-11-10 A | 822-SM-2A2-TIS-1002 | 100% | 2015-01-05 | 2015-01-12 | 822_AB_W11v4 |
| 822-SM-2A2-TIS-1002 |  | Steel fix for walls below OHVD | 8d | 2014-08-23 A | 2014-11-08 A | 822-SM-2A2-TIS-1000 | 100% | 2014-12-23 | 2015-01-03 | 822_AB_W11v4 |
| 822-SM-2A2-TIS-1010 |  | UT OHVD support wall | 10d | 2014-08-25 A | 2014-09-06 A |  | 100% | 2015-01-13 | 2015-01-23 | 822_AB_W11v4 |
| 822-SM-2A2-TIS-1020 |  | OHVD slab within transition zone | 8d | 2014-11-06 A | 2014-11-14 A |  | 100% | 2014-12-15 | 2014-12-23 | 822_AB_W11v4 |
| 822-SM-2A2-TIS-1030 |  | OHVD centre wall kickers in transition zone | 4d | 2014-11-15 A | 2014-11-19 A | 822-SM-2A2-TIS-1020 | 100% | 2014-12-24 | 2014-12-30 | 822_AB_W11v4 |
| 822-SM-2A2-TIS-1040 |  | OHVD centre wall in transition zone | 12d | 2014-11-20 A | 2014-11-26 A | 822-SM-2A2-TIS-1030 | 100% | 2014-12-31 | 2015-01-14 | 822_AB_W11v4 |
|  | 5 | **PH Adits** |  | 2014-04-10 | 2017-06-21 |  |  |  |  |  |
|  | 1 | **Ventilation Adit** |  | 2014-04-10 | 2017-01-30 |  |  |  |  |  |
|  | 2 | **Type K Profile (CH610.485 to CH237)** |  | 2014-04-10 | 2015-03-05 |  |  |  |  |  |
|  | 1 | **Backfill of Enlarged Profile** |  | 2014-04-10 | 2014-06-04 |  |  |  |  |  |
| 822-PH-VA-B-1020 |  | K21 to K06 | 17d | 2014-04-10 A | 2014-04-28 A | 822-KD-SS-1000 SS | 100% | 2014-09-01 | 2014-09-20 |  |
| 822-PH-VA-B-1030 |  | K05 to K01 | 17d | 2014-04-28 A | 2014-06-04 A | 822-PH-VA-B-1020 | 100% | 2014-09-22 | 2014-10-13 | 822_AB_W11v4 |

| ID | WBS | Activity | Duration | Start | Finish | Predecessors | Complete | Planned start | Planned finish | 822_AB_W11v4 | Task Type |
| --- | --- | --- | --- | --- | --- | --- | --- | --- | --- | --- | --- |
|  | 2 | **Waterproofing** |  | 2014-04-14 | 2014-05-31 |  |  |  |  |  |  |
| 822-PH-VA-W-1000 |  | WP K21 to K05 (16 bays) | 20d | 2014-04-14 A | 2014-05-15 A | 822-KD-SS-1000 SS | 100% | 2014-09-01 | 2014-09-24 |  |  |
| 822-PH-VA-W-1010 |  | WP K05 to K01 (5 bays) | 11d | 2014-05-15 A | 2014-05-31 A | 822-PH-VA-W-1000, 822-PH-VA-B-1030 SS+7d | 100% | 2014-09-30 | 2014-10-14 |  |  |
|  | 3 | **Type K Lining (K01 to K62)** |  | 2014-04-22 | 2014-10-18 |  |  |  |  |  |  |
|  | 1 | **K06 to K62 Lining** |  | 2014-04-22 | 2014-05-09 |  |  |  |  |  |  |
| 822-PH-VA-KL-1000 |  | K Lining K21 to K06 (16 bays) | 11d | 2014-04-22 A | 2014-05-09 A | 822-KD-SS-1000 SS | 100% | 2014-09-01 | 2014-09-13 |  |  |
|  | 2 | **PH3A2 Junction K01 to K06 Lining** |  | 2014-04-28 | 2014-10-18 |  |  |  |  |  |  |
|  | 1 | **End Wall** |  | 2014-04-28 | 2014-09-13 |  |  |  |  |  |  |
| 822-PH-VA-KL-1010 |  | Planning and preparations | 40d | 2014-04-28 A | 2014-06-02 A | 822-KD-SS-1000 SS | 100% | 2014-09-01 | 2014-10-20 | 822_AB_W11v4 |  |
| 822-PH-VA-KL-1020 |  | Waterproofing for End Wall | 3d | 2014-06-23 A | 2014-06-29 A | 822-PH-VA-KL-1010, 822-PH-VA-W-1010 | 100% | 2014-10-21 | 2014-10-23 | 822_AB_W11v4 |  |
| 822-PH-VA-KL-1030 |  | Invert and kicker and scaffolding | 9d | 2014-06-27 A | 2014-07-10 A | 822-PH-VA-KL-1020 | 100% | 2014-10-24 | 2014-11-03 | 822_AB_W11v4 |  |
| 822-PH-VA-KL-1035 |  | Rebar fixing & formwork to end wall | 14d | 2014-07-18 A | 2014-08-30 A | 822-PH-VA-KL-1030 | 100% | 2014-11-04 | 2014-11-19 | 822_AB_W11v4 |  |
| 822-PH-VA-KL-1040 |  | Concrete to End Wall | 5d | 2014-08-29 A | 2014-09-06 A | 822-PH-VA-KL-1035 | 100% | 2014-11-20 | 2014-11-25 | 822_AB_W11v4 |  |
| 822-PH-VA-KL-1050 |  | Remove scaffold and formwork | 4d | 2014-09-08 A | 2014-09-13 A | 822-PH-VA-KL-1040 | 100% | 2014-10-07 | 2014-10-10 | 822_AB_W11v4 |  |
|  | 2 | **K01 & K02** |  | 2014-06-08 | 2014-10-18 |  |  |  |  |  |  |
| 822-PH-VA-KL-1060 |  | Shift Gantry for rebar fixing K01, K02 and collar | 3d | 2014-06-08 A | 2014-06-28 A | 822-PH-VA-KL-1050 | 100% | 2014-09-10 | 2014-09-12 | 822_AB_W11v4 |  |
| 822-PH-VA-KL-1070 |  | Rebar fixing to K01, K02 and collar | 20d | 2014-09-06 A | 2014-09-27 A | 822-PH-VA-KL-1060 | 100% | 2014-10-03 | 2014-10-25 | 822_AB_W11v4 |  |
| 822-PH-VA-KL-1080 |  | Collar formwork erection for K01, K02 | 12d | 2014-10-08 A | 2014-10-14 A | 822-PH-VA-LL2-1010, 822-PH-VA-KL-1170 | 100% | 2014-11-13 | 2014-11-26 | 822_AB_W11v4 |  |
| 822-PH-VA-KL-1100 |  | K01 Lining with collar | 5d | 2014-10-14 A | 2014-10-17 A | 822-PH-VA-KL-1090 | 100% | 2014-12-24 | 2014-12-31 | 822_AB_W11v4 |  |
| 822-PH-VA-KL-1090 |  | K02 Lining with collar | 7d | 2014-10-17 A | 2014-10-18 A | 822-PH-VA-KL-1080, 822-PH-VA-KL-1220 | 100% | 2014-12-16 | 2014-12-23 | 822_AB_W11v4 |  |
|  | 3 | **K03 to K06** |  | 2014-07-19 | 2014-10-13 |  |  |  |  |  |  |
| 822-PH-VA-KL-1124 |  | Modify gantry for rebar fixing | 5d | 2014-07-19 A | 2014-08-18 A | 822-PH-VA-KL-1010 FS+6d | 100% | 2014-09-01 | 2014-09-05 | 822_AB_W11v4 |  |
| 822-PH-VA-KL-1126 |  | Rebar fixing for K03 to K05 | 18d | 2014-08-19 A | 2014-09-13 A | 822-PH-VA-KL-1124 | 100% | 2014-09-06 | 2014-09-27 | 822_AB_W11v4 |  |
| 822-PH-VA-KL-1130 |  | Collar Formwork erection | 12d | 2014-09-23 A | 2014-10-04 A | 822-PH-VA-LL1-1020, 822-PH-VA-KL-1126 | 100% | 2014-10-17 | 2014-10-30 | 822_AB_W11v4 |  |
| 822-PH-VA-KL-1170 |  | Type K Gantry Dismantle | 20d | 2014-09-27 A | 2014-10-03 A | 822-PH-VA-KL-1070 | 100% | 2014-10-03 | 2014-10-25 | 822_AB_W11v4 | (New) |
| 822-PH-VA-KL-1150 |  | K04 Lining with collar | 4d | 2014-10-04 A | 2014-10-08 A | 822-PH-VA-KL-1140, 822-PH-VA-KL-1130 | 100% | 2014-11-11 | 2014-11-14 | 822_AB_W11v4 |  |
| 822-PH-VA-KL-1160 |  | K03 Lining with collar | 4d | 2014-10-08 A | 2014-10-10 A | 822-PH-VA-KL-1150 | 100% | 2014-11-15 | 2014-11-19 | 822_AB_W11v4 |  |
| 822-PH-VA-KL-1140 |  | K05 & K06 Lining | 6d | 2014-10-10 A | 2014-10-13 A | 822-PH-VA-KL-1240 | 100% | 2014-11-04 | 2014-11-10 | 822_AB_W11v4 |  |

| ID | WBS | Activity | Duration | Start | Finish | Predecessors | Complete | Planned start | Planned finish | 822_AB_W11v4 |
| --- | --- | --- | --- | --- | --- | --- | --- | --- | --- | --- |
|  | 4 | **Drainage and Invert** |  | 2014-08-18 | 2014-12-08 |  |  |  |  |  |
| 822-PH-VA-DI-1010 |  | Invert and drainage K62 to K08 (55 bays) | 28d | 2014-08-18 A | 2014-12-08 A |  | 100% | 2015-03-19 | 2015-04-21 | 822_AB_W11v4 |
| 822-PH-VA-DI-1000 |  | Invert and drainage K01 to K07 (7 bays) | 7d | 2014-12-01 A | 2014-12-05 A | 822-PH-VA-DI-1010 | 100% | 2015-01-09 | 2015-01-16 | 822_AB_W11v4 |
|  | 5 | **Centre Wall** |  | 2014-12-20 | 2015-03-05 |  |  |  |  |  |
| 822-PH-VA-CW-1010 |  | Centre wall K04 to K07 (4 bays & 4.2m D-wall btw Type L North and L South) | 10d | 2014-12-20 A | 2015-01-23 A | 822-PH-VA-CW-1020, 822-PH-VA-CW-1060, 822-PH-VA-DI-1000 | 100% | 2015-03-25 | 2015-04-04 | 822_AB_W11v4 |
| 822-PH-VA-CW-1020 |  | Centre Wall K62 to K08 (55 bays) | 49d | 2014-12-29 A | 2015-03-05 A | 822-PH-VA-CW-1080 FS-6d | 100% | 2015-01-03 | 2015-03-07 | 822_AB_W11v4 |
|  | 3 | **Type K Profile (CH55.6 to CH237)** |  | 2014-05-05 | 2015-03-20 |  |  |  |  |  |
|  | 1 | **Backfill of Enlarged Profile** |  | 2014-05-05 | 2014-07-09 |  |  |  |  |  |
| 822-PH-VA-B-1040 |  | K63 to K68 (6 bays) | 13d | 2014-05-05 A | 2014-05-10 A | 822-KD-SS-1000 SS | 100% | 2014-09-01 | 2014-09-16 |  |
| 822-PH-VA-B-1050 |  | K72 to K81 (10 bays) | 24d | 2014-05-12 A | 2014-06-09 A | 822-PH-VA-B-1040 | 100% | 2014-09-17 | 2014-10-16 | 822_AB_W11v4 |
| 822-PH-VA-B-1060 |  | K86 to K93 (8 bays) - except K94 | 20d | 2014-06-14 A | 2014-07-09 A | 822-PH-VA-B-1050 | 100% | 2014-10-17 | 2014-11-08 | 822_AB_W11v4 |
|  | 2 | **Waterproofing** |  | 2014-05-07 | 2014-08-15 |  |  |  |  |  |
| 822-PH-VA-W-1020 |  | WP K63 to K68 (6 bays) | 7d | 2014-05-07 A | 2014-05-12 A | 822-PH-VA-B-1040 | 100% | 2014-09-17 | 2014-09-24 |  |
| 822-PH-VA-W-1030 |  | WP K72 to K81 (10 bays) | 16d | 2014-05-17 A | 2014-06-26 A | 822-PH-VA-W-1020, 822-PH-VA-B-1050 FS-12d | 100% | 2014-10-03 | 2014-10-21 | 822_AB_W11v4 |
| 822-PH-VA-W-1040 |  | WP K86 to K93 (8 bays) - except K94 | 13d | 2014-07-03 A | 2014-08-15 A | 822-PH-VA-W-1030, 822-PH-VA-B-1060 FS-7d | 100% | 2014-11-01 | 2014-11-15 | 822_AB_W11v4 |
| 822-PH-VA-W-1050 |  | Dismantle waterproofing gantry | 6d | 2014-07-03 A | 2014-07-10 A | 822-PH-VA-W-1040 | 100% | 2014-11-17 | 2014-11-22 | 822_AB_W11v4 |
|  | 3 | **Type K Lining (K63 to K94)** |  | 2014-05-15 | 2015-01-10 |  |  |  |  |  |
| 822-PH-VA-KL-1190 |  | Lining K63 to K68 (8 bays) | 18d | 2014-05-15 A | 2014-05-28 A | 822-PH-VA-KL-1000 | 100% | 2014-09-01 | 2014-09-22 |  |
| 822-PH-VA-KL-1200 |  | Lining K69 to K71 (3 bays) | 12d | 2014-05-30 A | 2014-07-21 A | 822-PH-VA-KL-1190 FS+12d, 822-PH-VA-B-1060 | 100% | 2014-11-10 | 2014-11-22 | 822_AB_W11v4 |
| 822-PH-VA-KL-1210 |  | Lining K72 to K79 (8 bays) | 20d | 2014-07-22 A | 2014-08-09 A | 822-PH-VA-KL-1200, 822-PH-VA-W-1050 | 100% | 2014-11-24 | 2014-12-16 | 822_AB_W11v4 |
| 822-PH-VA-KL-1240 |  | Lining K84 to K93 (10 bays) | 16d | 2014-08-11 A | 2014-11-10 A | 822-PH-VA-KL-1210, 822-PH-VA-W-1040 SS+2d | 100% | 2014-12-17 | 2015-01-07 | 822_AB_W11v4 |
| 822-PH-VA-KL-1250 |  | Lining K94 | 9d | 2014-09-08 A | 2014-09-13 A | 822-PH-VA-KL-1240 | 100% | 2014-10-09 | 2014-10-18 | 822_AB_W11v4 |
| 822-PH-VA-KL-1230 |  | Lining K80, K81, K82 (TCA1- 2 bays with temporary opening) | 12d | 2014-10-28 A | 2014-12-16 A | 822-PH-VA-KL-1160, 822-PH-VA-KL-1240 | 100% | 2014-11-04 | 2014-11-17 | 822_AB_W11v4 |
| 822-PH-VA-KL-1220 |  | Lining K83 (TCA1) | 5d | 2014-12-22 A | 2014-12-29 A | 822-PH-VA-KL-1230, 822-PH-VA-TCA1-1010 | 100% | 2015-01-02 | 2015-01-07 | 822_AB_W11v4 |
| 822-PH-VA-KL-1260 |  | Type K Lining Shutter Dismantle (K84 to K86 Area) | 12d | 2014-12-30 A | 2015-01-10 A | 822-PH-VA-KL-1220 | 100% | 2015-01-02 | 2015-01-15 | 822_AB_W11v4 |

| ID | WBS | Activity | Duration | Start | Finish | Predecessors | Complete | Planned start | Planned finish | Constraint | 822_AB_W11v4 | Task Type |
| --- | --- | --- | --- | --- | --- | --- | --- | --- | --- | --- | --- | --- |
|  | 4 | **Drainage and Invert** |  | 2014-09-29 | 2015-01-20 |  |  |  |  |  |  |  |
| 822-PH-VA-DI-1060 |  | Invert K87 to K94 (8 bays) | 9d | 2014-09-29 A | 2014-10-23 A | 822-PH-VA-KL-1240 | 100% | 2014-10-06 | 2014-10-15 |  | 822_AB_W11v4 |  |
| 822-PH-VA-DI-1020 |  | Invert K63 to K68 (6 bays) | 10d | 2014-12-06 A | 2014-12-12 A | 822-PH-VA-DI-1060 | 100% | 2014-12-15 | 2014-12-27 | start on or after 2014-11-10 | 822_AB_W11v4 |  |
| 822-PH-VA-DI-1030 |  | Invert K69 to K71 (3 bays) | 10d | 2014-12-10 A | 2014-12-12 A | 822-PH-VA-DI-1020 SS | 100% | 2014-12-15 | 2014-12-27 |  | 822_AB_W11v4 |  |
| 822-PH-VA-DI-1040 |  | Invert K72 to K79 (8 bays) | 7d | 2014-12-12 A | 2015-01-14 A | 822-PH-VA-DI-1030 | 100% | 2014-12-29 | 2015-01-06 |  | 822_AB_W11v4 |  |
| 822-PH-VA-DI-1050 |  | Invert K80 to K86 (TCA1 + Sump) | 9d | 2015-01-14 A | 2015-01-20 A | 822-PH-VA-KL-1220 | 100% | 2015-01-19 | 2015-01-28 |  | 822_AB_W11v4 |  |
|  | 5 | **Centre Wall** |  | 2014-11-21 | 2015-03-18 |  |  |  |  |  |  |  |
| 822-PH-VA-CW-1030 |  | Type K Centre Wall formwork fabrication | 2d | 2014-11-21 A | 2014-11-22 A | 822-PH-VA-DI-1060 | 100% | 2014-12-15 | 2014-12-16 | start on or after 2014-12-01 | 822_AB_W11v4 | (New) |
| 822-PH-VA-CW-1080 |  | Centre Wall K87 to K93 (7 bays) | 12d | 2014-11-24 A | 2015-03-07 A | 822-PH-VA-CW-1030 SS | 100% | 2014-12-15 | 2014-12-30 |  | 822_AB_W11v4 |  |
| 822-PH-VA-CW-1070 |  | Centre Wall K80 to K86 & K94 (TCA1 + Sump -8 bays) | 8d | 2015-01-15 A | 2015-03-16 A | 822-PH-VA-CW-1040, 822-PH-VA-CW-1010, 822-PH-VA-CW-1060, 822-PH-VA-DI-1050, 822-PH-VA-KL-1260 | 100% | 2015-03-20 | 2015-03-28 |  | 822_AB_W11v4 |  |
| 822-PH-VA-CW-1040 |  | Centre Wall K63 to K68 (6 bays) | 3d | 2015-02-06 A | 2015-02-13 A | 822-PH-VA-DI-1020, 822-PH-VA-CW-1020 | 100% | 2015-03-05 | 2015-03-07 |  | 822_AB_W11v4 |  |
| 822-PH-VA-CW-1050 |  | Centre Wall K69 to K71 (3 bays) | 3d | 2015-02-13 A | 2015-02-16 A | 822-PH-VA-DI-1030, 822-PH-VA-CW-1040 | 100% | 2015-03-09 | 2015-03-11 |  | 822_AB_W11v4 |  |
| 822-PH-VA-CW-1060 |  | Centre Wall K72 to K79 (8 bays) | 6d | 2015-02-24 A | 2015-03-14 A | 822-PH-VA-DI-1040, 822-PH-VA-CW-1050 | 100% | 2015-03-09 | 2015-03-14 |  | 822_AB_W11v4 |  |
| 822-PH-VA-CW-1090 |  | Dismantle centre wall shutter | 2d | 2015-03-17 A | 2015-03-18 A | 822-PH-VA-CW-1070, 822-PH-VA-CW-1010 | 100% | 2015-04-01 | 2015-04-02 |  | 822_AB_W11v4 |  |
|  | 6 | **TCA1 - Along Type K Side (K83)** |  | 2014-09-15 | 2015-03-20 |  |  |  |  |  |  |  |
| 822-PH-VA-TCA1-1010 |  | Construct back wall at K80, K81 & K82 wtih temporary opening | 28d | 2014-09-15 A | 2014-10-27 A | 822-PH-VAA-TP-1005 | 100% | 2014-11-01 | 2014-12-03 |  | 822_AB_W11v4 |  |
| 822-PH-VA-TCA1-1000 |  | Construct back wall at K83 | 10d | 2014-12-15 A | 2014-12-20 A | 822-PH-VA-KL-1230 | 100% | 2014-12-15 | 2014-12-27 |  | 822_AB_W11v4 |  |
| 822-PH-VA-TCA1-1020 |  | Seal up temporary opening - (K81 & K82) | 10d | 2015-03-09 A | 2015-03-20 A | 822-PH-VA-KL-1100, 822-PH-VA-TCA1-1000, 822-PH-VA-CW-1010, 822-PH-VA-CW-1090, 822-PH-VA-CW-1070 | 100% | 2015-03-18 | 2015-03-28 |  | 822_AB_W11v4 |  |
|  | 4 | **Connecting Adit at chg 591 - Type L Profile** |  | 2014-05-15 | 2014-11-26 |  |  |  |  |  |  |  |
| 822-PH-VA-L1-1005 |  | Backfill to drain layer at PH3A2 | 17d | 2014-05-23 A | 2014-06-25 A | 822-PH-VA-KL-1190 | 100% | 2014-09-23 | 2014-10-14 |  | 822_AB_W11v4 |  |
| 822-PH-VA-L1-1030 |  | Backfill and Blinding Ln1 to Ln5 | 3d | 2014-06-26 A | 2014-07-02 A | 822-PH-VA-L1-1005 | 100% | 2014-10-15 | 2014-10-17 |  | 822_AB_W11v4 |  |
| 822-PH-VA-L1-1010 |  | Type L Form Build | 28d | 2014-06-27 A | 2014-08-15 A | 822-PH-VA-L1-1030 | 100% | 2014-10-18 | 2014-11-19 |  | 822_AB_W11v4 | (New) |
|  | 1 | **Waterproofing** |  | 2014-05-15 | 2014-05-31 |  |  |  |  |  |  |  |
| 822-PH-VA-LW1-1000 |  | Waterproofing to Ln1 to Ln5 | 10d | 2014-05-15 A | 2014-05-31 A | 822-PH-VA-L1-1030 | 100% | 2014-10-18 | 2014-10-29 |  |  |  |

| ID | WBS | Activity | Duration | Start | Finish | Predecessors | Complete | Remaining | Planned start | Planned finish | Total float | Free float | Calendar | 822_AB_W11v4 | Task Type |
| --- | --- | --- | --- | --- | --- | --- | --- | --- | --- | --- | --- | --- | --- | --- | --- |
|  | 2 | **Lining** |  | 2014-06-03 | 2014-11-26 |  |  |  |  |  |  |  |  |  |  |
| 822-PH-VA-LL1-1010 |  | Kicker Ln1 to Ln5 | 10d | 2014-06-03 A | 2014-06-12 A | 822-PH-VA-L1-1010, 822-PH-VA-LW1-1000 | 100% |  | 2014-11-20 | 2014-12-01 |  |  |  | 822_AB_W11v4 |  |
| 822-PH-VA-LL1-1050 |  | Lining Ln4 | 10d | 2014-08-15 A | 2014-09-04 A | 822-PH-VA-LL1-1030, 822-PH-2A2-1260 | 100% |  | 2015-01-09 | 2015-01-20 |  |  |  | 822_AB_W11v4 |  |
| 822-PH-VA-LL1-1040 |  | Lining Ln3 | 10d | 2014-09-05 A | 2014-09-13 A | 822-PH-VA-LL1-1020, 822-PH-2A2-1174 | 100% |  | 2014-10-15 | 2014-10-25 |  |  |  | 822_AB_W11v4 |  |
| 822-PH-VA-LL1-1030 |  | Lining Ln2 | 10d | 2014-09-13 A | 2014-09-20 A | 822-PH-VA-LL1-1040 | 100% |  | 2014-10-27 | 2014-11-06 |  |  |  | 822_AB_W11v4 |  |
| 822-PH-VA-LL1-1020 |  | Lining Ln1 (After rebar fixing at PH3A2 Collar K3 & K4) | 10d | 2014-09-20 A | 2014-09-23 A | 822-PH-VA-LL1-1010 | 100% |  | 2014-10-03 | 2014-10-14 |  |  |  | 822_AB_W11v4 |  |
| 822-PH-VA-LL1-1060 |  | Drainage and invert slab | 10d | 2014-09-23 A | 2014-11-26 A | 822-PH-VA-LL1-1050 | 100% |  | 2014-10-11 | 2014-10-22 |  |  |  | 822_AB_W11v4 |  |
|  | 5 | **Connecting Adit at chg 605 - Type L Profile** |  | 2014-06-02 | 2014-12-05 |  |  |  |  |  |  |  |  |  |  |
| 822-PH-VA-L2-1000 |  | Concrete block, backfill, and blinding Ls6 to Ls10 | 30d | 2014-06-02 A | 2014-06-20 A | 822-PH-VA-KL-1010, 822-PH-VA-L1-1030 | 100% |  | 2014-10-18 | 2014-11-21 |  |  |  | 822_AB_W11v4 |  |
|  | 1 | **Waterproofing** |  | 2014-06-21 | 2014-06-28 |  |  |  |  |  |  |  |  |  |  |
| 822-PH-VA-LW2-1000 |  | Waterproofing to Ls6 to Ls10 | 10d | 2014-06-21 A | 2014-06-28 A | 822-PH-VA-L2-1000 | 100% |  | 2014-11-22 | 2014-12-03 |  |  |  | 822_AB_W11v4 |  |
|  | 2 | **Lining** |  | 2014-09-02 | 2014-12-05 |  |  |  |  |  |  |  |  |  |  |
| 822-PH-VA-LL2-1000 |  | Kicker Ls5 to Ls8 | 10d | 2014-09-02 A | 2014-09-05 A | 822-PH-VA-LW2-1000 | 100% |  | 2014-12-04 | 2014-12-15 |  |  |  | 822_AB_W11v4 |  |
| 822-PH-VA-LL2-1010 |  | Lining Ls5 (after rebar fixing at PH3A2 collar K1&K2) | 10d | 2014-10-18 A | 2014-10-25 A | 822-PH-VA-LL2-1000, 822-PH-VA-LL1-1050 | 100% |  | 2014-11-01 | 2014-11-12 |  |  |  | 822_AB_W11v4 |  |
| 822-PH-VA-LL2-1020 |  | Lining Ls6 | 10d | 2014-10-24 A | 2014-10-27 A | 822-PH-VA-LL2-1010 | 100% |  | 2014-11-13 | 2014-11-24 |  |  |  | 822_AB_W11v4 |  |
| 822-PH-VA-LL2-1030 |  | Lining Ls7 | 10d | 2014-10-28 A | 2014-10-31 A | 822-PH-VA-LL2-1020 | 100% |  | 2014-11-25 | 2014-12-05 |  |  |  | 822_AB_W11v4 |  |
| 822-PH-VA-LL2-1040 |  | Lining Ls8 with colloar PH2A2 Junction J02 crown | 10d | 2014-11-03 A | 2014-11-17 A | 822-PH-VA-LL2-1030, 822-PH-2A2-1580 FF | 100% |  | 2014-12-15 | 2014-12-27 |  |  |  | 822_AB_W11v4 |  |
| 822-PH-VA-LL2-1050 |  | Drainage and invert slab | 14d | 2014-11-20 A | 2014-11-28 A | 822-PH-VA-LL2-1040, 822-PH-VA-LL1-1060 | 100% |  | 2014-12-29 | 2015-01-14 |  |  |  | 822_AB_W11v4 |  |
| 822-PH-VA-LL2-1060 |  | Type L Form Dismantle | 12d | 2014-11-21 A | 2014-12-05 A | 822-PH-VA-LL2-1040 FS+3d | 100% |  | 2015-01-02 | 2015-01-15 |  |  |  | 822_AB_W11v4 | (New) |
|  | 1 | **PHVA Finishing Works** |  | 2015-03-19 | 2017-01-30 |  |  |  |  |  |  |  |  |  |  |
| 822-PH-VA-FW-1000 |  | PHVA ABWF | 24d | 2015-03-19 A | 2015-04-09 A | 822-PH-VA-LL2-1060, 822-PH-VA-TCA1-1020 FF | 100% |  | 2015-04-01 | 2015-04-29 |  |  | W11 6 day site - no stoppage at CNY | 822_AB_W11v4 |  |
| 822-PH-VA-FW-1010 |  | PHVA Degree 2 works by others (assumed period) | 78d | 2015-04-10 A | 2017-01-02 | 822-PH-VA-FW-1000 | 100% | 0d | 2015-04-20 | 2015-07-20 | -822d | 0d | W11 6 day site - no stoppage at CNY |  |  |
| 822-PH-VA-FW-1020 |  | PHVA Degree 3 works by others (assumed period) | 25d | 2017-01-02 | 2017-01-30 | 822-PH-VA-FW-1010 FS-25d |  |  |  |  | -847d | 0d | W11 6 day site - no stoppage at CNY |  |  |
| 822-PH-VA-FW-1030 |  | Finishing works after DC | 25d | 2017-01-02 | 2017-01-30 | 822-PH-VA-FW-1020 FS-25d |  |  |  |  | -847d | 0d | W11 6 day site - no stoppage at CNY |  |  |

| ID | WBS | Activity | Duration | Start | Finish | Predecessors | Complete | Planned start | Planned finish | Constraint | 822_AB_W11v4 | Task Type |
| --- | --- | --- | --- | --- | --- | --- | --- | --- | --- | --- | --- | --- |
|  | 2 | **Vehicular Access Adit** |  | 2014-04-23 | 2017-06-21 |  |  |  |  |  |  |  |
|  | 1 | **Type J Profile** |  | 2014-04-28 | 2015-05-09 |  |  |  |  |  |  |  |
|  | 1 | **Type J Lining** |  | 2014-04-28 | 2015-05-09 |  |  |  |  |  |  |  |
| 822-PH-VAA-JL-1000 |  | J20 to J27 (8 bays) | 11d | 2014-04-28 A | 2014-05-08 A | 822-KD-SS-1000 SS | 100% | 2014-09-01 | 2014-09-13 |  |  |  |
| 822-PH-VAA-JL-1010 |  | J28 to J32 (5 bays) | 8d | 2014-05-09 A | 2014-05-14 A | 822-PH-VAA-JL-1000 | 100% | 2014-09-15 | 2014-09-23 |  |  |  |
| 822-PH-VAA-JL-1020 |  | J37 to J43 (7 bays) | 10d | 2014-05-15 A | 2014-05-24 A | 822-PH-VAA-JL-1010 | 100% | 2014-09-24 | 2014-10-07 |  |  |  |
| 822-PH-VAA-JL-1030 |  | J44 to J55 (Reinforced- 12 bays) | 27d | 2014-05-29 A | 2014-07-18 A | 822-PH-VAA-JL-1020 | 100% | 2014-10-08 | 2014-11-07 |  | 822_AB_W11v4 |  |
| 822-PH-VAA-JL-1050 |  | Dismantle J gantry | 20d | 2014-06-26 A | 2014-07-03 A | 822-PH-VAA-JL-1030 | 100% | 2014-11-08 | 2014-12-01 |  | 822_AB_W11v4 | (New) |
| 822-PH-VAA-JL-1040 |  | J56 to J57 (Reinforced- 2 bays) - by Surface Team | 18d | 2015-02-28 A | 2015-05-09 A | 822-PH-VAA-JL-1030, 822-PH-VAA-JL-1050 | 100% | 2015-03-02 | 2015-03-21 | start on or after 2015-03-02 | 822_AB_W11v4 |  |
|  | 2 | **Invert & Drainage** |  | 2014-04-28 | 2015-05-09 |  |  |  |  |  |  |  |
| 822-PH-VAA-I-1000 |  | J05 to J07 (3 bays) - reinforced | 9d | 2014-04-28 A | 2014-05-08 A | 822-KD-SS-1000 SS | 100% | 2014-09-01 | 2014-09-11 |  |  |  |
| 822-PH-VAA-I-1050 |  | J44 to J55 (12 bays) - undrained | 20d | 2014-07-30 A | 2014-08-30 A | 822-PH-VAA-JL-1030, 822-PH-VAA-I-1000 | 100% | 2014-11-08 | 2014-12-01 |  | 822_AB_W11v4 |  |
| 822-PH-VAA-I-1040 |  | J37 to J43 (7 bays) - reinforced | 9d | 2014-09-23 A | 2014-11-05 A | 822-PH-VAA-I-1050 | 100% | 2014-10-03 | 2014-10-13 |  | 822_AB_W11v4 |  |
| 822-PH-VAA-I-1030 |  | J33 to J36 (4 bays) - reinforced | 6d | 2014-11-05 A | 2014-11-11 A | 822-PH-VAA-TP-1050, 822-PH-VAA-I-1040 | 100% | 2014-12-20 | 2014-12-29 |  | 822_AB_W11v4 |  |
| 822-PH-VAA-I-1020 |  | J28 to J32 (5 bays) - reinforced | 6d | 2014-11-07 A | 2014-11-18 A | 822-PH-VAA-I-1030 | 100% | 2014-12-30 | 2015-01-06 |  | 822_AB_W11v4 |  |
| 822-PH-VAA-I-1010 |  | J13 to J27 (15 bays) - reinforced | 16d | 2014-11-13 A | 2015-04-04 A | 822-PH-VAA-I-1020 | 100% | 2015-01-07 | 2015-01-24 |  | 822_AB_W11v4 |  |
| 822-PH-VAA-I-1070 |  | J56 to J57 (2 bays) - undrained | 6d | 2015-03-06 A | 2015-05-09 A | 822-PH-VAA-JL-1040 | 100% | 2015-04-04 | 2015-04-11 |  | 822_AB_W11v4 |  |
| 822-PH-VAA-I-1060 |  | J08 to J12 (5 bays) - reinforced | 6d | 2015-03-30 A | 2015-04-04 A | 822-PH-VAA-H-1160 FS+3d | 100% | 2015-04-01 | 2015-04-08 |  | 822_AB_W11v4 |  |
|  | 4 | **Lining at TCA1 chg 180-200** |  | 2014-04-28 | 2014-10-31 |  |  |  |  |  |  |  |
| 822-PH-VAA-TP-1000 |  | Design and procurement of formwork for temporary opening | 46d | 2014-04-28 A | 2014-08-18 A | 822-KD-SS-1000 SS | 100% | 2014-09-01 | 2014-10-27 |  | 822_AB_W11v4 |  |
| 822-PH-VAA-TP-1005 |  | On site fabrication of back wall formwork | 5d | 2014-07-30 A | 2014-08-30 A | 822-PH-VAA-TP-1000 | 100% | 2014-10-28 | 2014-11-01 |  | 822_AB_W11v4 |  |
| 822-PH-VAA-TP-1010 |  | Construct back wall at J33 to J34 with temporary opening | 14d | 2014-08-21 A | 2014-09-03 A | 822-PH-VAA-TP-1005 | 100% | 2014-11-03 | 2014-11-18 |  | 822_AB_W11v4 |  |
| 822-PH-VAA-TP-1030 |  | Waterproofing to lining, invert blinding and kicker | 4d | 2014-09-01 A | 2014-10-06 A | 822-PH-VAA-TP-1010 | 100% | 2014-10-18 | 2014-10-22 |  | 822_AB_W11v4 |  |
| 822-PH-VAA-TP-1040 |  | J33 and J34 lining with temporary opeings - reinforced | 16d | 2014-09-04 A | 2014-10-06 A | 822-PH-VAA-TP-1010, 822-PH-VAA-JL-1030, 822-PH-VAA-TP-1030 FS-2d | 100% | 2014-10-21 | 2014-11-07 |  | 822_AB_W11v4 |  |
| 822-PH-VAA-TP-1020 |  | Construct back wall at J35 to J36 | 10d | 2014-10-07 A | 2014-10-18 A | 822-PH-VAA-TP-1040 | 100% | 2014-11-05 | 2014-11-15 |  | 822_AB_W11v4 |  |
| 822-PH-VAA-TP-1050 |  | J35 and J36 lining | 8d | 2014-10-20 A | 2014-10-31 A | 822-PH-VAA-TP-1020 | 100% | 2014-11-17 | 2014-11-25 |  | 822_AB_W11v4 |  |

| ID | WBS | Activity | Duration | Start | Finish | Predecessors | Complete | Remaining | Planned start | Planned finish | Total float | Free float | Calendar | 822_AB_W11v4 | Task Type |
| --- | --- | --- | --- | --- | --- | --- | --- | --- | --- | --- | --- | --- | --- | --- | --- |
|  | 5 | **TCA1** |  | 2014-12-01 | 2015-04-22 |  |  |  |  |  |  |  |  |  |  |
| 822-PH-VAA-TP-1060 |  | Backfilling TCA1 | 24d | 2014-12-01 A | 2015-03-31 A | 822-PH-VA-TCA1-1020 FS-18d | 100% |  | 2015-03-24 | 2015-04-21 |  |  |  | 822_AB_W11v4 |  |
| 822-PH-VAA-TP-1070 |  | Waterproofing + invert blinding and kicker for temp opening area | 6d | 2015-03-14 A | 2015-04-06 A | 822-PH-VAA-TP-1060 FF | 100% |  | 2015-04-01 | 2015-04-08 |  |  |  | 822_AB_W11v4 |  |
| 822-PH-VAA-TP-1080 |  | Seal up temporary opening (Bay J33&J34 at TCA1) and Grouting TCA1 | 14d | 2015-04-07 A | 2015-04-22 A | 822-PH-VAA-TP-1070 | 100% |  | 2015-04-22 | 2015-05-08 |  |  |  | 822_AB_W11v4 |  |
|  | 3 | **Adit Internal Structures** |  | 2014-04-28 | 2017-01-28 |  |  |  |  |  |  |  |  |  |  |
| 822-PH-VAA-IS-1000 |  | Procure formwork system for internal strutures | 46d | 2014-04-28 A | 2014-08-19 A | 822-KD-SS-1000 SS | 100% |  | 2014-09-01 | 2014-10-27 |  |  |  | 822_AB_W11v4 |  |
| 822-PH-VAA-IS-1010 |  | Erection of Travelling Formwork | 18d | 2014-08-25 A | 2014-09-06 A | 822-PH-VAA-IS-1000, 822-PH-VAA-I-1050 SS+10d | 100% |  | 2014-11-20 | 2014-12-10 |  |  |  | 822_AB_W11v4 | (New) |
| 822-PH-VAA-IS-1020 |  | J55 to J51 (5 Bays) -Internal Structures | 26d | 2014-09-08 A | 2015-02-04 A | 822-PH-VAA-I-1050 FS-6d, 822-PH-VAA-IS-1010 | 100% |  | 2014-10-20 | 2014-11-18 |  |  |  | 822_AB_W11v4 |  |
| 822-PH-VAA-IS-1050 |  | J50 to J41 (10 Bays) -Internal Structures | 38d | 2014-10-16 A | 2015-02-14 A | 822-PH-VAA-IS-1020 FS-10d, 822-PH-VAA-I-1040 | 100% |  | 2014-11-10 | 2014-12-23 |  |  |  | 822_AB_W11v4 |  |
| 822-PH-VAA-IS-1060 |  | J40 to J31 (10 Bays) -Internal Structures | 30d | 2014-11-10 A | 2015-07-20 A | 822-PH-VAA-IS-1050 FS-12d, 822-PH-VAA-I-1020 | 100% |  | 2015-02-03 | 2015-03-16 |  |  |  | 822_AB_W11v4 |  |
| 822-PH-VAA-IS-1070 |  | J30 to J21 (10 Bays) -Internal Structures | 30d | 2014-12-01 A | 2015-07-25 A | 822-PH-VAA-I-1010 | 100% |  | 2014-12-18 | 2015-01-24 |  |  |  | 822_AB_W11v4 |  |
| 822-PH-VAA-IS-1080 |  | J20 to J13 (8 Bays) -Internal Structures | 24d | 2014-12-23 A | 2015-07-27 A |  | 100% |  | 2015-01-16 | 2015-02-12 |  |  |  | 822_AB_W11v4 |  |
| 822-PH-VAA-IS-1095 |  | J57 to J5 Roadway & D-kerb (including dismantling of forms) | 36d | 2015-03-11 A | 2015-06-05 A | 822-PH-VAA-H-1130 FF+4d, 822-PH-VAA-JL-1040 FF+4d, 822-PH-VAA-IS-1090 FF | 100% |  | 2015-04-04 | 2015-05-18 |  |  | W11 6 day site - no stoppage at CNY | 822_AB_W11v4 |  |
| 822-PH-VAA-IS-1090 |  | J05 to J12 (8 bays) - Internal Structures | 24d | 2015-04-08 A | 2015-07-13 A | 822-PH-VAA-I-1060 FS-6d | 100% |  | 2015-04-20 | 2015-05-18 |  |  |  | 822_AB_W11v4 |  |
| 822-PH-VAA-IS-1100 |  | J56-57 (2 bays) - Internal Structures - by surface team | 30d | 2015-04-13 A | 2017-01-28 | 822-PH-VAA-I-1070 FS-15d, 822-PH-VAA-IS-1095 FF | 50% | 24d | 2015-04-20 | 2015-05-25 | -1086d | 0d |  |  |  |
|  | 2 | **Hammerhead** |  | 2014-04-28 | 2015-04-27 |  |  |  |  |  |  |  |  |  |  |
| 822-PH-VAA-H-1000 |  | Place order for collar formwork | 52d | 2014-04-28 A | 2014-09-06 A | 822-KD-SS-1000 SS | 100% |  | 2014-09-01 | 2014-11-03 |  |  |  | 822_AB_W11v4 |  |
| 822-PH-VAA-H-1010 |  | TCA2 Closure for Works (Open traffic at underpass) | 18d | 2014-06-24 A | 2014-06-25 A | 822-MT-G-L-1005, 822-MT-G-L-1030 SS+12d | 100% |  | 2014-09-01 | 2014-09-22 |  |  |  | 822_AB_W11v4 |  |
| 822-PH-VAA-H-1020 |  | Remove underbreak for hammerhead | 6d | 2014-06-25 A | 2014-07-31 A | 822-PH-VAA-H-1010 | 100% |  | 2014-09-23 | 2014-09-29 |  |  |  | 822_AB_W11v4 |  |
| 822-PH-VAA-H-1090 |  | Backfill TCA2 up to J08 & J09 | 22d | 2014-07-28 A | 2014-09-23 A | 822-PH-VAA-H-1010, 822-PH-VAA-H-1020 | 100% |  | 2014-09-30 | 2014-10-27 |  |  |  | 822_AB_W11v4 |  |
| 822-PH-VAA-H-1040 |  | Waterproofing to Hammerhead end wall | 3d | 2014-08-08 A | 2014-08-09 A | 822-PH-VAA-H-1030 | 100% |  | 2014-10-10 | 2014-10-13 |  |  |  | 822_AB_W11v4 |  |
| 822-PH-VAA-H-1002 |  | Offsite Fabrication for Collar formwork | 38d | 2014-09-08 A | 2014-10-31 A | 822-PH-VAA-H-1000 | 100% |  | 2014-10-09 | 2014-11-21 |  |  |  | 822_AB_W11v4 |  |
| 822-PH-VAA-H-1050 |  | scaffold and rebar fixing to hammerhead end wall | 12d | 2014-09-10 A | 2014-09-19 A | 822-PH-VAA-H-1040 SS+8d | 100% |  | 2014-10-03 | 2014-10-16 |  |  |  | 822_AB_W11v4 |  |
| 822-PH-VAA-H-1060 |  | Formwork to hammerhead end wall | 6d | 2014-09-22 A | 2014-10-11 A | 822-PH-VAA-H-1050 | 100% |  | 2014-10-03 | 2014-10-09 |  |  |  | 822_AB_W11v4 |  |
| 822-PH-VAA-H-1030 |  | Construct concrete/back wall at TCA2 for hammerhead end wall | 7d | 2014-09-24 A | 2014-10-11 A | 822-PH-VAA-H-1020 | 100% |  | 2014-10-03 | 2014-10-10 |  |  |  | 822_AB_W11v4 |  |
| 822-PH-VAA-H-1140 |  | Scaffold and anchor ties for rebar fixing J8-J11 | 16d | 2014-09-29 A | 2014-10-13 A | 822-PH-VAA-H-1090 | 100% |  | 2014-10-10 | 2014-10-28 |  |  |  | 822_AB_W11v4 |  |
| 822-PH-VAA-H-1070 |  | Concrete to hammerhead end wall | 1d | 2014-10-09 A | 2014-10-22 A | 822-PH-VAA-H-1060 | 100% |  | 2014-11-17 | 2014-11-17 |  |  |  | 822_AB_W11v4 |  |
| 822-PH-VAA-H-1145 |  | Rebar fixing for collar J8-J11 | 24d | 2014-10-14 A | 2014-11-19 A | 822-PH-VAA-H-1140 | 100% |  | 2014-11-01 | 2014-11-28 |  |  |  | 822_AB_W11v4 |  |
| 822-PH-VAA-H-1080 |  | Use J shutter for hammerhead lining pour 1 | 9d | 2014-11-01 A | 2014-11-11 A | 822-PH-VAA-H-1070, 822-PH-VAA-H-1002, 822-PH-VAA-H-1090, 822-PH-VAA-TP-1050 | 100% |  | 2014-12-15 | 2014-12-24 |  |  |  | 822_AB_W11v4 |  |
| 822-PH-VAA-H-1085 |  | Hammerhead lining pour 2 | 15d | 2014-11-12 A | 2014-11-28 A | 822-PH-VAA-H-1080 | 100% |  | 2014-12-27 | 2015-01-14 |  |  |  | 822_AB_W11v4 |  |
| 822-PH-VAA-H-1110 |  | Hammerhead Lining collar pour 1 | 8d | 2014-11-29 A | 2015-01-30 A | 822-PH-VAA-H-1085 | 100% |  | 2015-01-15 | 2015-01-23 |  |  |  | 822_AB_W11v4 |  |
| 822-PH-VAA-H-1125 |  | Erection of J08 to J11 Collar formwork | 12d | 2014-12-01 A | 2015-03-02 A | 822-PH-VAA-H-1110 FF, 822-PH-VAA-H-1115 FF, 822-PH-VAA-H-1145 | 100% |  | 2015-01-06 | 2015-01-19 |  |  |  | 822_AB_W11v4 |  |
| 822-PH-VAA-H-1160 |  | Lining J08 to J12 (5 bays) | 24d | 2014-12-22 A | 2015-03-11 A |  | 100% |  | 2015-01-16 | 2015-02-12 |  |  |  | 822_AB_W11v4 |  |
| 822-PH-VAA-H-1130 |  | Internal Structure (3 x 6m bays) | 24d | 2015-02-09 A | 2015-04-27 A |  | 100% |  | 2015-03-23 | 2015-04-20 |  |  |  | 822_AB_W11v4 |  |
| 822-PH-VAA-H-1115 |  | Hammerhead lining collar pour 2 | 8d | 2015-02-19 A | 2015-03-11 A | 822-PH-VAA-H-1110 | 100% |  | 2015-03-02 | 2015-03-10 |  |  |  | 822_AB_W11v4 |  |
| 822-PH-VAA-H-1170 |  | Dismantle Type J Lining formwork | 12d | 2015-03-12 A | 2015-03-24 A | 822-PH-VAA-H-1160 | 100% |  | 2015-03-23 | 2015-04-04 |  |  |  | 822_AB_W11v4 | (New) |
| 822-PH-VAA-H-1120 |  | 400mm thk End wall & 250 Slab (3mHx7mW) & 250mm thk End Wall | 24d | 2015-03-16 A | 2015-04-10 A | 822-PH-VAA-H-1085 | 100% |  | 2015-03-16 | 2015-04-13 |  |  |  | 822_AB_W11v4 |  |

| ID | WBS | Activity | Duration | Start | Finish | Predecessors | Complete | Planned start | Planned finish | 822_AB_W11v4 |
| --- | --- | --- | --- | --- | --- | --- | --- | --- | --- | --- |
|  | 9 | **Link Structure** |  | 2014-05-05 | 2015-07-13 |  |  |  |  |  |
|  | 1 | **Base Slab to Level +34.1** |  | 2014-05-05 | 2014-12-23 |  |  |  |  |  |
| 822-PH-VB4-LS-1000 |  | Trimming to excavation to correct profile and moving of services | 40d | 2014-05-05 A | 2014-06-19 A | 822-KD-SS-1000 SS | 100% | 2014-09-01 | 2014-10-20 | 822_AB_W11v4 |
| 822-PH-VB4-LS-1010 |  | Base slab | 20d | 2014-06-16 A | 2014-07-29 A | 822-PH-VB4-LS-1000 | 100% | 2014-10-21 | 2014-11-12 | 822_AB_W11v4 |
| 822-PH-VB4-LS-1020 |  | Walls & slabs up to +34.1m | 28d | 2014-07-30 A | 2014-10-13 A | 822-PH-VB4-LS-1010 | 100% | 2014-11-13 | 2014-12-15 | 822_AB_W11v4 |
| 822-PH-VB4-LS-1080 |  | Construction of box culvert | 40d | 2014-10-15 A | 2014-11-29 A | 822-PH-VB4-LS-1020 | 100% | 2014-11-11 | 2014-12-29 | 822_AB_W11v4 |
| 822-PH-VB4-LS-1030 |  | Temporary support to steel deck | 6d | 2014-10-27 A | 2014-12-01 A | 822-PH-VB4-LS-1020 | 100% | 2014-11-11 | 2014-11-17 | 822_AB_W11v4 |
| 822-PH-VB4-LS-1090 |  | Removal of temporary steel pipe | 5d | 2014-11-01 A | 2014-11-06 A | 822-PH-VB4-LS-1080 SS+12d | 100% | 2014-12-15 | 2014-12-19 | 822_AB_W11v4 |
| 822-PH-VB4-LS-1100 |  | Service duct above box culvert (LHS) | 16d | 2014-12-01 A | 2014-12-23 A | 822-PH-VB4-LS-1090, 822-PH-VB4-LS-1080 | 100% | 2015-01-16 | 2015-02-03 | 822_AB_W11v4 |
| 822-PH-VB4-LS-1210 |  | Service duct above box culvert (RHS) | 9d | 2014-12-01 A | 2014-12-23 A | 822-PH-VB4-LS-1100, 822-PH-VB4-LS-1130 | 100% | 2015-03-30 | 2015-04-09 | 822_AB_W11v4 |
| 822-PH-VB4-LS-1040 |  | Dismantle steel deck (LHS) | 12d | 2014-12-02 A | 2014-12-15 A | 822-PH-VB4-LS-1030 FS-6d | 100% | 2015-01-10 | 2015-01-23 | 822_AB_W11v4 |
|  | 2 | **Box Structure LHS** |  | 2014-11-20 | 2015-01-23 |  |  |  |  |  |
| 822-PH-VB4-LS-1050 |  | Construct box structure (LHS) +34.2 to +38.1m (incl b/f) | 10d | 2014-11-20 A | 2014-12-19 A | 822-PH-VB4-LS-1000, 822-PH-VB4-LS-1040 | 100% | 2015-01-24 | 2015-02-04 | 822_AB_W11v4 |
| 822-PH-VB4-LS-1060 |  | Construct box structure (LHS) +38.1 to +39.45m | 9d | 2014-12-20 A | 2015-01-02 A | 822-PH-VB4-LS-1050 | 100% | 2015-01-05 | 2015-01-14 | 822_AB_W11v4 |
| 822-PH-VB4-LS-1070 |  | Construct box structure (LHS) +39.45 to +40.85m | 9d | 2014-12-30 A | 2015-01-09 A | 822-PH-VB4-LS-1060 | 100% | 2015-01-02 | 2015-01-12 | 822_AB_W11v4 |
| 822-PH-VB4-LS-1110 |  | Divert traffic to LHS | 6d | 2015-01-10 A | 2015-01-14 A | 822-PH-VB4-LS-1070 | 100% | 2015-01-28 | 2015-02-03 | 822_AB_W11v4 |
| 822-PH-VB4-LS-1120 |  | Dismantle steel deck (RHS) | 5d | 2015-01-14 A | 2015-01-23 A | 822-PH-VB4-LS-1110 | 100% | 2015-02-04 | 2015-02-09 | 822_AB_W11v4 |
|  | 3 | **Box Structure RHS** |  | 2015-01-19 | 2015-02-12 |  |  |  |  |  |
| 822-PH-VB4-LS-1130 |  | Construct box structure (RHS) +34.2 to +38.1m (incl b/f) | 10d | 2015-01-19 A | 2015-01-26 A | 822-PH-VB4-LS-1120 | 100% | 2015-02-06 | 2015-02-24 | 822_AB_W11v4 |
| 822-PH-VB4-LS-1140 |  | Construct box structure (RHS) +38.1 to +39.45m | 8d | 2015-01-27 A | 2015-02-03 A | 822-PH-VB4-LS-1130 | 100% | 2015-02-25 | 2015-03-05 | 822_AB_W11v4 |
| 822-PH-VB4-LS-1150 |  | Construct box structure (RHS) +39.45 to 40.85m | 8d | 2015-02-04 A | 2015-02-12 A | 822-PH-VB4-LS-1140 | 100% | 2015-02-24 | 2015-03-04 | 822_AB_W11v4 |
|  | 4 | **Walls and Slab to +47.85** |  | 2015-01-23 | 2015-07-13 |  |  |  |  |  |
| 822-PH-VB4-LS-1151 |  | External Wall (LHS) (+40.85 to +47.6m) | 20d | 2015-01-23 A | 2015-02-26 A | 822-PH-VB4-LS-1070 | 100% | 2015-02-02 | 2015-03-03 | 822_AB_W11v4 |
| 822-PH-VB4-LS-1152 |  | External Wall (RHS) (+40.85 to +47.6m) | 15d | 2015-02-16 A | 2015-03-13 A | 822-PH-VB4-LS-1150 | 100% | 2015-02-23 | 2015-03-11 | 822_AB_W11v4 |
| 822-PH-VB4-LS-1170 |  | Construct side walls and service ducts (+40.85 to +47.85m) | 14d | 2015-02-28 A | 2015-07-13 A | 822-PH-VB4-LS-1230 | 100% | 2015-04-23 | 2015-05-09 | 822_AB_W11v4 |
| 822-PH-VB4-LS-1160 |  | Erection of falsework for Slab at +47.85m | 26d | 2015-03-13 A | 2015-03-26 A | 822-PH-VB4-LS-1120, 822-PH-VB4-LS-1151, 822-PH-VB4-LS-1152 FF | 100% | 2015-03-16 | 2015-04-15 | 822_AB_W11v4 |
| 822-PH-VB4-LS-1180 |  | Construct slab at +47.85m | 10d | 2015-03-19 A | 2015-03-30 A | 822-PH-VB4-LS-1160 FS-12d, 822-PH-VB4-LS-1150 | 100% | 2015-04-01 | 2015-04-13 | 822_AB_W11v4 |
| 822-PH-VB4-LS-1230 |  | Dismantle formwork and falsework for Slab at +47.85m (14 calendar days after cast) | 8d | 2015-04-27 A | 2015-07-07 A | 822-PH-VB4-LS-1180 FS+11d | 100% | 2015-05-02 | 2015-05-11 | 822_AB_W11v4 |

| ID | WBS | Activity | Duration | Start | Finish | Predecessors | Complete | Planned start | Planned finish | Constraint | 822_AB_W11v4 |
| --- | --- | --- | --- | --- | --- | --- | --- | --- | --- | --- | --- |
|  | 5 | **Walls and Slab to +50.75 & Parapet** |  | 2015-04-01 | 2015-06-03 |  |  |  |  |  |  |
| 822-PH-VB4-LS-1190 |  | Walls and slab (+47.85 to +48.65m) | 9d | 2015-04-01 A | 2015-04-25 A | 822-PH-VB4-LS-1180 | 100% | 2015-04-20 | 2015-04-29 |  | 822_AB_W11v4 |
| 822-PH-VB4-LS-1195 |  | Walls and Slab (+48.65 to +50.75m) | 9d | 2015-04-01 A | 2015-06-03 A | 822-PH-VB4-LS-1190 | 100% | 2015-04-30 | 2015-05-11 |  | 822_AB_W11v4 |
| 822-PH-VB4-LS-1200 |  | Parapet at roof | 8d | 2015-05-08 A | 2015-05-14 A | 822-PH-VB4-LS-1195 | 100% | 2015-06-05 | 2015-06-13 |  | 822_AB_W11v4 |
|  | 6 | **Finishings** |  | 2015-06-05 | 2015-06-13 |  |  |  |  |  |  |
| 822-PH-VB4-LS-1220 |  | ABWF | 8d | 2015-06-05 A | 2015-06-13 A | 822-PH-VB4-LS-1200 FS-6d, 822-PH-VB4-LS-1100, 822-PH-VB4-LS-1170 FF, 822-PH-VB4-LS-1210 | 100% |  |  |  | 822_AB_W11v4 |
|  | 6 | **PH1 Junction** |  | 2014-04-23 | 2015-06-13 |  |  |  |  |  |  |
|  | 1 | **Staircase Adit (CH 125+781 - CH 125+790)** |  | 2014-04-23 | 2015-06-13 |  |  |  |  |  |  |
|  | 1 | **Lining Structure** |  | 2014-04-23 | 2014-05-27 |  |  |  |  |  |  |
| 822-PH-1-1000 |  | Removal of megashore frame and scaffold for poured lining | 18d | 2014-04-23 A | 2014-05-27 A | 822-KD-SS-1000 SS | 100% | 2014-09-01 | 2014-09-22 |  |  |
|  | 2 | **Internal Structure** |  | 2014-04-28 | 2015-06-13 |  |  |  |  |  |  |
| 822-PH-1-0100 |  | Procure subcontract | 52d | 2014-04-28 A | 2014-06-28 A | 822-KD-SS-1000 SS | 100% | 2014-09-01 | 2014-11-03 |  | 822_AB_W11v4 |
| 822-PH-1-1010 |  | Void & internal M&E Riser walls (2 lifts) | 18d | 2014-07-31 A | 2014-08-30 A | 822-PH-1-1000, 822-MT-G-L-1005, 822-PH-1-0100 | 100% | 2014-11-04 | 2014-11-24 |  | 822_AB_W11v4 |
| 822-PH-1-1020 |  | Staircase ST-5 Walls (2 lifts) and Landing Slab | 14d | 2014-08-07 A | 2014-09-20 A | 822-PH-1-1010 | 100% | 2014-11-25 | 2014-12-10 |  | 822_AB_W11v4 |
| 822-PH-1-1030 |  | Lobby to tunnel Wall | 12d | 2014-09-01 A | 2014-09-20 A | 822-PH-1-1020 | 100% | 2014-10-15 | 2014-10-28 |  | 822_AB_W11v4 |
| 822-PH-1-1040 |  | Remove Slab and staircase landing formwork | 11d | 2014-09-22 A | 2014-09-30 A | 822-PH-1-1030 FS+7d | 100% | 2014-11-06 | 2014-11-18 |  | 822_AB_W11v4 |
| 822-PH-1-1050 |  | ABWF | 22d | 2015-03-10 A | 2015-06-13 A | 822-PH-1-1040, 822-PH-1-1130, 822-PH-1-1420 SS | 100% | 2015-03-16 | 2015-04-10 |  | 822_AB_W11v4 |
|  | 3 | **Underpass Internal Structure - Main Tunnel Section** |  | 2014-09-01 | 2014-09-30 |  |  |  |  |  |  |
| 822-PH-1-1120 |  | Air duct Slab construction | 18d | 2014-09-01 A | 2014-09-20 A | 822-MT-G-L-1005, 822-PH-1-0100 | 100% | 2014-09-01 | 2014-09-22 |  | 822_AB_W11v4 |
| 822-PH-1-1130 |  | Remove slab formwork | 7d | 2014-09-22 A | 2014-09-30 A | 822-PH-1-1120 FS+7d | 100% | 2014-12-01 | 2014-12-08 |  | 822_AB_W11v4 |
|  | 4 | **Underpass Internal Structure - VAA Section** |  | 2014-06-18 | 2015-06-11 |  |  |  |  |  |  |
|  | 1 | **Foul Water Sump at lowest level** |  | 2014-06-18 | 2015-04-30 |  |  |  |  |  |  |
| 822-PH-1-1150 |  | Remove blinding, concrete blocks and site clearance | 18d | 2014-06-18 A | 2014-08-18 A | 822-MT-G-L-1005, 822-PH-1-0100 | 100% | 2014-11-04 | 2014-11-24 |  | 822_AB_W11v4 |
| 822-PH-1-1160 |  | Cast 400 thk foul water sump slab | 14d | 2014-08-18 A | 2014-08-29 A | 822-PH-1-1150 | 100% | 2014-11-25 | 2014-12-10 |  | 822_AB_W11v4 |
| 822-PH-1-1170 |  | Remove formwork and falsework | 13d | 2014-11-15 A | 2014-11-29 A | 822-PH-1-1160 FS+7d | 100% | 2014-12-15 | 2014-12-31 | start on or after 2014-11-15 | 822_AB_W11v4 |
| 822-PH-1-1190 |  | ABWF | 13d | 2015-03-10 A | 2015-04-30 A | 822-PH-1-1170 | 100% | 2015-03-16 | 2015-03-30 |  | 822_AB_W11v4 |

| ID | WBS | Activity | Duration | Start | Finish | Predecessors | Complete | Planned start | Planned finish | 822_AB_W11v4 |
| --- | --- | --- | --- | --- | --- | --- | --- | --- | --- | --- |
|  | 2 | **Sump Pump Room (PHV-UT-P-02)** |  | 2014-08-15 | 2015-06-11 |  |  |  |  |  |
| 822-PH-1-1200 |  | Sump Pump Room Internal & Air Ducts Walls (2 lifts) | 14d | 2014-08-15 A | 2014-09-19 A | 822-PH-1-1160 | 100% | 2014-12-11 | 2014-12-29 | 822_AB_W11v4 |
| 822-PH-1-1210 |  | Staircase Internal Wall (2 lifts) | 14d | 2014-09-01 A | 2014-09-19 A | 822-PH-1-1200 | 100% | 2014-12-30 | 2015-01-15 | 822_AB_W11v4 |
| 822-PH-1-1230 |  | Sump Pump Room Soffit slab | 10d | 2014-09-20 A | 2014-10-03 A | 822-PH-1-1225 | 100% | 2014-11-08 | 2014-11-19 | 822_AB_W11v4 |
| 822-PH-1-1240 |  | Remove soffit formwork | 10d | 2014-10-30 A | 2014-11-11 A |  | 100% | 2014-11-27 | 2014-12-08 | 822_AB_W11v4 |
| 822-PH-1-1220 |  | Staircase ST-4 and landing at underpass level | 8d | 2014-11-11 A | 2014-11-20 A | 822-PH-1-1210, 822-PH-1-1240 | 100% | 2014-12-27 | 2015-01-06 | 822_AB_W11v4 |
| 822-PH-1-1225 |  | Staircase ST-4 and landing up to invert slab level | 13d | 2014-11-21 A | 2014-12-05 A | 822-PH-1-1220 | 100% | 2015-01-07 | 2015-01-21 | 822_AB_W11v4 |
| 822-PH-1-1260 |  | ABWF | 24d | 2015-03-10 A | 2015-04-30 A | 822-PH-1-1225 | 100% | 2015-03-16 | 2015-04-13 | 822_AB_W11v4 |
| 822-PH-1-1250 |  | Install pump sump room doors | 10d | 2015-06-01 A | 2015-06-11 A | 822-PH-1-1225 | 100% | 2015-07-02 | 2015-07-13 | 822_AB_W11v4 |
|  | 3 | **Protected Lobbies + Corridors + Lobbies + LV Switch Rooms & Mains Room** |  | 2014-06-30 | 2015-06-11 |  |  |  |  |  |
| 822-PH-1-1270 |  | Rooms and Lobby Base Slab | 8d | 2014-06-30 A | 2014-07-09 A | 822-PH-1-0100 | 100% | 2014-11-04 | 2014-11-12 | 822_AB_W11v4 |
| 822-PH-1-1280 |  | Corridor to Tunnel and lobby to Tunnel Internal Wall | 8d | 2014-10-04 A | 2014-10-18 A | 822-PH-1-1430, 822-PH-1-1270 | 100% | 2014-12-23 | 2015-01-03 | 822_AB_W11v4 |
| 822-PH-1-1290 |  | Soffit Slab - Corridor to Tunnel | 8d | 2014-10-20 A | 2014-10-28 A | 822-PH-1-1280 | 100% | 2015-01-05 | 2015-01-13 | 822_AB_W11v4 |
| 822-PH-1-1300 |  | Remove soffit slab formwork - corridor to tunnel | 6d | 2014-11-06 A | 2014-11-07 A |  | 100% | 2014-12-15 | 2014-12-20 | 822_AB_W11v4 |
| 822-PH-1-1320 |  | LV Switch Rooms, OHL Maintenance & Lobby Internal Walls | 10d | 2015-03-25 A | 2015-04-15 A | 822-PH-2A2-1800, 822-PH-1-1300 | 100% | 2015-04-01 | 2015-04-13 | 822_AB_W11v4 |
| 822-PH-1-1330 |  | Lobby + Corridor to Tunnel + LV Switchrooms & OHL Room Soffit Slab | 12d | 2015-04-03 A | 2015-04-15 A | 822-PH-1-1320 FS-6d | 100% | 2015-04-23 | 2015-05-07 | 822_AB_W11v4 |
| 822-PH-1-1340 |  | Remove Soffit Slab formwork | 4d | 2015-04-16 A | 2015-04-17 A | 822-PH-1-1330 | 100% | 2015-05-08 | 2015-05-12 | 822_AB_W11v4 |
| 822-PH-1-1350 |  | Mass concrete infill to LV Switch Room + Lobby & Mains Room | 4d | 2015-04-18 A | 2015-04-20 A | 822-PH-1-1340 FS-2d | 100% | 2015-05-11 | 2015-05-14 | 822_AB_W11v4 |
| 822-PH-1-1380 |  | ABWF | 10d | 2015-04-20 A | 2015-04-30 A | 822-PH-1-1360 SS | 100% | 2015-05-02 | 2015-05-13 | 822_AB_W11v4 |
| 822-PH-1-1360 |  | Install lifting beam at corridor to tunnel | 3d | 2015-05-05 A | 2015-05-07 A | 822-PH-1-1340 | 100% | 2015-06-01 | 2015-06-03 | 822_AB_W11v4 |
| 822-PH-1-1370 |  | Install doors to protected lobbies + corridor & lobby to tunnel | 10d | 2015-06-01 A | 2015-06-11 A | 822-PH-1-1350 SS | 100% | 2015-07-02 | 2015-07-13 | 822_AB_W11v4 |
|  | 4 | **Air Ducts Structure above Invert Slab** |  | 2014-10-17 | 2015-04-30 |  |  |  |  |  |
| 822-PH-1-1390 |  | Air ducts internal walls | 14d | 2014-10-17 A | 2014-11-01 A |  | 100% | 2014-11-27 | 2014-12-12 | 822_AB_W11v4 |
| 822-PH-1-1400 |  | Air ducts Slab | 16d | 2014-11-03 A | 2014-12-09 A | 822-PH-1-1390 | 100% | 2014-12-15 | 2015-01-05 | 822_AB_W11v4 |
| 822-PH-1-1410 |  | Remove air ducts slab formwork | 12d | 2014-12-10 A | 2014-12-12 A | 822-PH-1-1400 FS+6d | 100% | 2015-01-13 | 2015-01-26 | 822_AB_W11v4 |
| 822-PH-1-1420 |  | ABWF | 16d | 2015-04-13 A | 2015-04-30 A | 822-PH-1-1410 | 100% | 2015-04-20 | 2015-05-08 | 822_AB_W11v4 |

| ID | WBS | Activity | Duration | Start | Finish | Predecessors | Complete | Remaining | Planned start | Planned finish | Total float | Free float | Calendar | 822_AB_W11v4 |
| --- | --- | --- | --- | --- | --- | --- | --- | --- | --- | --- | --- | --- | --- | --- |
|  | 5 | **Roof Above Trackside LV Switch Room (PHV-T-E-13)** |  | 2014-10-24 | 2015-06-06 |  |  |  |  |  |  |  |  |  |
| 822-PH-1-1430 |  | Top Slab and Air Ducts Wall | 22d | 2014-10-24 A | 2015-01-24 A |  | 100% |  | 2014-11-27 | 2014-12-22 |  |  |  | 822_AB_W11v4 |
| 822-PH-1-1440 |  | End Wall above trackside LV Rooms ceiling | 12d | 2015-04-17 A | 2015-04-18 A | 822-PH-1-1400 | 100% |  | 2015-04-20 | 2015-05-04 |  |  |  | 822_AB_W11v4 |
| 822-PH-1-1470 |  | ABWF | 10d | 2015-04-17 A | 2015-04-30 A | 822-PH-1-1460 | 100% |  | 2015-04-27 | 2015-05-08 |  |  |  | 822_AB_W11v4 |
| 822-PH-1-1435 |  | Partition walls above top slab | 6d | 2015-06-01 A | 2015-06-06 A | 822-PH-1-1430 | 100% |  | 2015-07-02 | 2015-07-08 |  |  |  | 822_AB_W11v4 |
| 822-PH-1-1460 |  | Remove Walls formwork | 6d | 2015-06-01 A | 2015-06-06 A | 822-PH-1-1440 | 100% |  | 2015-07-02 | 2015-07-08 |  |  |  | 822_AB_W11v4 |
|  | 7 | **PHVAA Finishing Works** |  | 2015-05-02 | 2017-06-21 |  |  |  |  |  |  |  |  |  |
| 822-PH-VAA-FW-1020 |  | PHVAA Degree 2 (4H) works by others (assumed period) | 24d | 2015-05-02 A | 2017-01-31 | 822-PH-VAA-IS-1095, 822-PH-VB4-LS-1220, 822-PH-1-1470 | 30% | 26d | 2015-06-15 | 2015-07-11 | -897d | 0d | W11 6 day site - no stoppage at CNY |  |
| 822-PH-VAA-FW-1000 |  | PHVAA Degree 2 (4G) works by others (assumed period) | 210d | 2015-06-01 A | 2017-01-31 | 822-PH-1-1470, 822-PH-VB4-LS-1220, 822-PH-VAA-IS-1095 | 15% | 26d | 2015-10-01 | 2016-06-03 | -878d | 0d | W11 6 day site - no stoppage at CNY |  |
| 822-PH-VAA-FW-1010 |  | PHVAA Degree 3 (4G) works by others (assumed period) | 6d | 2017-02-01 | 2017-02-07 | 822-PH-VAA-FW-1000 |  |  |  |  | -878d | 19d | W11 6 day site - no stoppage at CNY |  |
| 822-PH-VAA-FW-1030 |  | PHVAA Degree 3 (4H) works by others (assumed period) | 25d | 2017-02-01 | 2017-03-01 | 822-PH-VAA-FW-1020 |  |  |  |  | -897d | 0d | W11 6 day site - no stoppage at CNY |  |
| 822-PH-VAA-FW-1040 |  | PHVAA Finishings after DC | 24d | 2017-03-02 | 2017-03-29 | 822-PH-VAA-FW-1010, 822-PH-VAA-FW-1030 |  |  |  |  | -897d | 0d | W11 6 day site - no stoppage at CNY |  |
| 822-PH-VAA-FW-1050 |  | Undertake tests and pass Statutory Inspections | 72d | 2017-03-30 | 2017-06-21 | 822-PH-VAA-FW-1040 |  |  |  |  | -660d | 0d | W11 6 day site - no stoppage at CNY |  |
|  | 6 | **Shek Yam Adits** |  | 2014-12-15 | 2015-01-10 |  |  |  |  |  |  |  |  |  |
|  | 1 | **SY Access Adit** |  | 2014-12-15 | 2015-01-10 |  |  |  |  |  |  |  |  |  |
| 822-SY-AA-1000 |  | Clear out all construction services and equipment | 12d | 2014-12-15 A | 2015-01-10 A | 822-KD-P-1100, 822-KD-P-1130, 822-MT-CO-1030, 822-MT-CO-1020 | 100% |  | 2015-01-02 | 2015-01-15 |  |  |  | 822_AB_W11v4 |
|  | 2 | **Crusher Adit** |  |  |  |  |  |  |  |  |  |  |  |  |
|  | 7 | **VB4** |  | 2014-04-28 | 2017-07-08 |  |  |  |  |  |  |  |  |  |
|  | 3 | **VB4 Internal Works** |  | 2014-04-28 | 2017-07-08 |  |  |  |  |  |  |  |  |  |
|  | 1 | **VB4 Finishing Works** |  | 2014-04-28 | 2017-07-08 |  |  |  |  |  |  |  |  |  |
| 822-PH-VB4-IW-1000 |  | VB4 Degree 3 works by others (period assumed) | 180d | 2014-04-28 A | 2014-12-15 A | 822-KD-SS-1000 SS | 100% |  | 2014-09-01 | 2015-04-09 |  |  | W11 6 day site - no stoppage at CNY | 822_AB_W11v4 |
| 822-PH-VB4-IW-1010 |  | Install permenent doors | 24d | 2014-08-18 A | 2014-11-29 A | 822-PH-VB4-IW-1000 SS+96d | 100% |  | 2014-12-27 | 2015-01-24 |  |  |  | 822_AB_W11v4 |
| 822-PH-VB4-IW-1020 |  | VB4 Finishing works after DC | 24d | 2014-12-29 A | 2015-07-25 A | 822-PH-VB4-IW-1000, 822-PH-VB4-IW-1010 | 100% |  | 2015-01-02 | 2015-01-29 |  |  | W11 6 day site - no stoppage at CNY | 822_AB_W11v4 |
| 822-PH-VB4-IW-1030 |  | Undertake tests and pass Statutory Inspections | 72d | 2017-04-17 | 2017-07-08 | 822-PH-VB4-IW-1020, 822-PH-VB4-EW-1220 |  |  |  |  | -675d | 86d | W11 6 day site - no stoppage at CNY |  |

| ID | WBS | Activity | Duration | Start | Finish | Predecessors | Complete | Remaining | Planned start | Planned finish | Total float | Free float | Constraint | 822_AB_W11v4 |
| --- | --- | --- | --- | --- | --- | --- | --- | --- | --- | --- | --- | --- | --- | --- |
|  | 2 | **VB4 External Works** |  | 2014-04-28 | 2017-06-22 |  |  |  |  |  |  |  |  |  |
|  | 1 | **External ABWF** |  | 2014-04-28 | 2014-10-11 |  |  |  |  |  |  |  |  |  |
| 822-PH-VB4-EW-1010 |  | Install External Louvers & Aluminium Vertical Fins | 40d | 2014-04-28 A | 2014-08-02 A | 822-PH-VB4-EW-1050 | 100% |  | 2014-09-18 | 2014-11-05 |  |  |  | 822_AB_W11v4 |
| 822-PH-VB4-EW-1020 |  | Dismantle External Scaffolding | 12d | 2014-07-11 A | 2014-10-11 A | 822-PH-VB4-EW-1010 | 100% |  | 2014-11-06 | 2014-11-19 |  |  |  | 822_AB_W11v4 |
|  | 2 | **Roofing Works** |  | 2014-04-28 | 2017-03-21 |  |  |  |  |  |  |  |  |  |
| 822-PH-VB4-EW-1030 |  | Apply Waterproofing Membrane | 2d | 2014-04-28 A | 2014-04-28 A | 822-KD-SS-1000 SS | 100% |  | 2014-09-01 | 2014-09-02 |  |  |  |  |
| 822-PH-VB4-EW-1040 |  | Apply Insulation Board | 6d | 2014-04-29 A | 2014-06-09 A | 822-PH-VB4-EW-1030 | 100% |  | 2014-09-03 | 2014-09-10 |  |  |  | 822_AB_W11v4 |
| 822-PH-VB4-EW-1050 |  | Top Screed | 6d | 2014-05-07 A | 2014-06-10 A | 822-PH-VB4-EW-1040 | 100% |  | 2014-09-11 | 2014-09-17 |  |  |  | 822_AB_W11v4 |
| 822-PH-VB4-EW-1070 |  | Install green roof for VB4 | 33d | 2017-02-11 | 2017-03-21 | 822-PH-VB4-EW-1160 |  |  |  |  | -676d | 80d |  |  |
|  | 3 | **Underground Drainage** |  | 2014-11-21 | 2017-03-08 |  |  |  |  |  |  |  |  |  |
| 822-PH-VB4-EW-1080 |  | Storm Drainage | 142d | 2014-11-21 A | 2017-01-13 | 822-PH-VB4-EW-1020, 822-PH-VB4-EW-1130 SS+3d | 88% | 11d | 2014-12-18 | 2015-06-13 | -685d | 0d | start on or after 2014-12-13 |  |
| 822-PH-VB4-EW-1130 |  | Drainage along Kam Shung Road | 110d | 2014-11-21 A | 2017-02-10 | 822-PH-VAA-TP-1060 FF+12d | 85% | 35d | 2014-12-15 | 2015-05-04 | -756d | 0d | start on or after 2014-12-06 |  |
| 822-PH-VB4-EW-1170 |  | Drainage Manhole, Gully and Pipe | 138d | 2014-12-15 A | 2017-01-13 | 822-PH-VB4-EW-1130 SS+8d | 88% | 11d | 2015-01-02 | 2015-06-22 | -756d | 0d |  |  |
| 822-PH-VB4-EW-1190 |  | Water Supply Pipe | 145d | 2015-01-21 A | 2015-11-14 A |  | 100% |  | 2015-02-02 | 2015-07-31 |  |  | start on or after 2014-11-30 | 822_AB_W11v4 |
| 822-PH-VB4-EW-1160 |  | Power Draw Pit & Duct/ Earth Mat | 119d | 2015-04-01 A | 2017-02-10 | 822-PH-VB4-EW-1120 SS | 70% | 35d | 2015-05-09 | 2015-09-26 | -676d | 0d |  |  |
| 822-PH-VB4-EW-1120 |  | Oil interceptor | 43d | 2015-05-12 A | 2015-07-02 A | 822-PH-VB4-EW-1110 SS | 100% |  | 2015-06-19 | 2015-08-10 |  |  |  | 822_AB_W11v4 |
| 822-PH-VB4-EW-1090 |  | Foul Sewerage | 110d | 2015-06-01 A | 2015-10-16 A | 822-PH-VB4-EW-1020, 822-PH-VB4-EW-1080 SS+6d | 100% |  | 2015-06-01 | 2015-10-10 |  |  |  | 822_AB_W11v4 |
| 822-PH-VB4-EW-1100 |  | Site formation and retaining wall | 123d | 2015-06-01 A | 2017-02-11 | 822-PH-VB4-EW-1020, 822-PH-VB4-EW-1080 SS+9d | 75% | 36d | 2015-06-01 | 2015-10-27 | -644d | 112d |  |  |
| 822-PH-VB4-EW-1180 |  | Foul Water Manhole | 105d | 2015-06-01 A | 2015-10-16 A | 822-PH-VB4-EW-1170 SS+7d | 100% |  | 2015-06-01 | 2015-10-05 |  |  |  | 822_AB_W11v4 |
| 822-PH-VB4-EW-1110 |  | Soakaway system | 43d | 2015-06-19 A | 2015-10-16 A | 822-PH-VB4-EW-1090 SS+16d | 100% |  | 2015-06-19 | 2015-08-10 |  |  |  | 822_AB_W11v4 |
| 822-PH-VB4-EW-1150 |  | Surface Drainage | 70d | 2015-11-02 A | 2017-03-08 | 822-PH-VB4-EW-1080 FS-24d | 5% | 57d | 2015-11-16 | 2016-02-08 | -698d | 0d |  |  |
|  | 4 | **Emergency Vehicle Access Road** |  | 2015-03-23 | 2017-04-15 |  |  |  |  |  |  |  |  |  |
| 822-PH-VB4-EW-1200 |  | Kerb and Roadworks | 40d | 2015-03-23 A | 2017-02-21 | 822-PH-VB4-EW-1150 SS+8d | 10% | 44d | 2015-09-11 | 2015-10-30 | -698d | 0d |  |  |
| 822-PH-VB4-EW-1210 |  | Perm Access Roadworks & Footpath | 45d | 2015-03-23 A | 2017-02-28 | 822-PH-VB4-EW-1200, 822-PH-VB4-EW-1190 SS | 10% | 6d | 2015-10-31 | 2015-12-22 | -698d | 0d |  |  |
| 822-PH-VB4-EW-1220 |  | Fire Hydrant, Sign and Street Furniture | 40d | 2017-03-01 | 2017-04-15 | 822-PH-VB4-EW-1210 |  |  |  |  | -698d | 0d |  |  |

| ID | WBS | Activity | Duration | Start | Finish | Predecessors | Complete | Planned start | Planned finish | Total float | Free float | 822_AB_W11v4 |
| --- | --- | --- | --- | --- | --- | --- | --- | --- | --- | --- | --- | --- |
|  | 5 | **Landscaping** |  | 2017-01-14 | 2017-06-22 |  |  |  |  |  |  |  |
| 822-PH-VB4-EW-1230 |  | Hard and Soft Landscaping | 137d | 2017-01-14 | 2017-06-22 | 822-PH-VB4-EW-1170, 822-PH-VB4-EW-1180 FS-30d, 822-PH-VB4-EW-1190 FS-30d |  |  |  | -756d | 0d |  |
|  | 8 | **SM Shaft EAP & VB5** |  | 2014-04-17 | 2017-11-01 |  |  |  |  |  |  |  |
|  | 1 | **EAP** |  | 2014-04-28 | 2017-02-14 |  |  |  |  |  |  |  |
|  | 1 | **Lining & Invert** |  | 2014-04-28 | 2014-07-19 |  |  |  |  |  |  |  |
| 822-SM-EAP-L-0100 |  | Mobilise | 5d | 2014-04-28 A | 2014-05-05 A | 822-KD-SS-1000 SS | 100% | 2014-09-01 | 2014-09-05 |  |  |  |
| 822-SM-EAP-L-1000 |  | N1 lining chg 28-33 | 10d | 2014-05-02 A | 2014-05-13 A | 822-SM-EAP-L-0100 | 100% | 2014-09-06 | 2014-09-18 |  |  |  |
| 822-SM-EAP-L-1010 |  | N2 lining chg 33-37 | 10d | 2014-05-14 A | 2014-05-20 A | 822-SM-EAP-L-1000 | 100% | 2014-09-19 | 2014-09-30 |  |  |  |
| 822-SM-EAP-L-1040 |  | Invert slab chg 7-25 | 10d | 2014-05-14 A | 2014-05-27 A | 822-SM-EAP-L-0100 | 100% | 2014-09-06 | 2014-09-18 |  |  |  |
| 822-SM-EAP-L-1020 |  | N3 lining chg 37-43 | 10d | 2014-05-21 A | 2014-05-29 A | 822-SM-EAP-L-1010 | 100% | 2014-10-03 | 2014-10-14 |  |  |  |
| 822-SM-EAP-L-1050 |  | Invert slab chg 25-32 | 10d | 2014-05-21 A | 2014-06-05 A | 822-SM-EAP-L-1040, 822-SM-EAP-L-1000 | 100% | 2014-09-19 | 2014-09-30 |  |  | 822_AB_W11v4 |
| 822-SM-EAP-L-1030 |  | Modify N shutter and move to junction crown | 11d | 2014-06-02 A | 2014-07-19 A | 822-SM-EAP-L-1020 | 100% | 2014-10-15 | 2014-10-27 |  |  | 822_AB_W11v4 |
| 822-SM-EAP-L-1060 |  | Invert slab chg 32-43 | 18d | 2014-06-06 A | 2014-06-25 A | 822-SM-EAP-L-1050 | 100% | 2014-10-03 | 2014-10-23 |  |  | 822_AB_W11v4 |
|  | 2 | **Internal Structures chg 7 to 25** |  | 2014-07-03 | 2014-09-29 |  |  |  |  |  |  |  |
| 822-SM-EAP-IS-1000 |  | Lower wall & slab chg 7-25 | 20d | 2014-07-03 A | 2014-07-28 A | 822-SM-EAP-L-1040 FS+2d, 822-SM-EAP-L-1030, 822-SM-EAP-L-1060 | 100% | 2014-10-28 | 2014-11-19 |  |  | 822_AB_W11v4 |
| 822-SM-EAP-IS-1010 |  | Upper wall kicker chg 7-25 | 6d | 2014-08-02 A | 2014-09-20 A | 822-SM-EAP-IS-1000 | 100% | 2014-11-20 | 2014-11-26 |  |  | 822_AB_W11v4 |
| 822-SM-EAP-IS-1020 |  | Upper wall chg 7-25 | 14d | 2014-09-23 A | 2014-09-29 A | 822-SM-EAP-IS-1010 | 100% | 2014-10-07 | 2014-10-22 |  |  | 822_AB_W11v4 |
|  | 3 | **Internal Structures chg 25 to 32** |  | 2014-08-02 | 2014-10-06 |  |  |  |  |  |  |  |
| 822-SM-EAP-IS-1030 |  | Lower wall & slab chg 25-32 | 20d | 2014-08-02 A | 2014-09-01 A | 822-SM-EAP-IS-1000, 822-SM-EAP-L-1050, 822-SM-EAP-IS-1010 | 100% | 2014-11-27 | 2014-12-19 |  |  | 822_AB_W11v4 |
| 822-SM-EAP-IS-1040 |  | Upper wall kicker chg 25-32 | 6d | 2014-09-02 A | 2014-09-20 A | 822-SM-EAP-IS-1030 | 100% | 2014-10-09 | 2014-10-15 |  |  | 822_AB_W11v4 |
| 822-SM-EAP-IS-1050 |  | Upper wall chg 25-32 | 14d | 2014-09-22 A | 2014-10-06 A | 822-SM-EAP-IS-1040, 822-SM-EAP-IS-1020 | 100% | 2014-10-23 | 2014-11-07 |  |  | 822_AB_W11v4 |
|  | 4 | **Internal Structures chg 32 to 43** |  | 2014-08-02 | 2014-11-20 |  |  |  |  |  |  |  |
| 822-SM-EAP-IS-1060 |  | Lower wall & slab chg 32-43 | 20d | 2014-08-02 A | 2014-11-10 A | 822-SM-EAP-IS-1030, 822-SM-EAP-L-1030, 822-SM-EAP-L-1060, 822-SM-EAP-IS-1040 | 100% | 2014-11-01 | 2014-11-24 |  |  | 822_AB_W11v4 |
| 822-SM-EAP-IS-1070 |  | Upper wall kicker chg 32-43 | 6d | 2014-09-02 A | 2014-11-05 A | 822-SM-EAP-IS-1060 | 100% | 2014-11-25 | 2014-12-01 |  |  | 822_AB_W11v4 |
| 822-SM-EAP-IS-1080 |  | Upper wall chg 32-43 | 14d | 2014-09-22 A | 2014-11-20 A | 822-SM-EAP-IS-1070, 822-SM-EAP-IS-1050 | 100% | 2014-12-02 | 2014-12-17 |  |  | 822_AB_W11v4 |

| ID | WBS | Activity | Duration | Start | Finish | Predecessors | Complete | Remaining | Planned start | Planned finish | Total float | Free float | Calendar | 822_AB_W11v4 |
| --- | --- | --- | --- | --- | --- | --- | --- | --- | --- | --- | --- | --- | --- | --- |
|  | 5 | **Finishing Works** |  | 2014-12-01 | 2017-02-14 |  |  |  |  |  |  |  |  |  |
| 822-SM-EAP-FW-1000 |  | EAP ABWF to degree 1 | 22d | 2014-12-01 A | 2014-12-22 A | 822-SM-EAP-IS-1080 | 100% |  | 2015-01-16 | 2015-02-06 |  |  | W11 7 day no hols | 822_AB_W11v4 |
| 822-SM-EAP-FW-1010 |  | Degree 2 works by others (period assumed) | 78d | 2014-12-23 A | 2015-06-17 A | 822-SM-EAP-FW-1000 | 100% |  | 2015-01-06 | 2015-04-11 |  |  | W11 6 day site - no stoppage at CNY | 822_AB_W11v4 |
| 822-SM-EAP-FW-1020 |  | Degree 3 works by others (period assumed) | 42d | 2015-06-18 A | 2017-01-31 | 822-SM-EAP-FW-1010 |  | 26d | 2015-06-18 | 2015-08-05 | -860d | 0d | W11 6 day site - no stoppage at CNY |  |
| 822-SM-EAP-FW-1030 |  | Finishing works after DC | 12d | 2017-02-01 | 2017-02-14 | 822-SM-EAP-FW-1020 |  |  |  |  | -860d | 0d | W11 6 day site - no stoppage at CNY |  |
|  | 2 | **SM Shaft** |  | 2014-04-28 | 2017-11-01 |  |  |  |  |  |  |  |  |  |
|  | 1 | **Shaft Lining** |  | 2014-04-28 | 2014-09-29 |  |  |  |  |  |  |  |  |  |
| 822-SM-S-L-1000 |  | Concrete remedial works | 21d | 2014-04-28 A | 2014-05-22 A | 822-KD-SS-1000 SS | 100% |  | 2014-09-01 | 2014-09-25 |  |  |  |  |
| 822-SM-S-L-1010 |  | Slipform shaft lining -22.5m to 0m | 70d | 2014-05-23 A | 2014-07-04 A | 822-SM-S-L-1000 | 100% |  | 2014-09-26 | 2014-12-06 |  |  | W11 7 day site | 822_AB_W11v4 |
| 822-SM-S-L-1020 |  | Slipform shaft lining 0m to +20m | 10d | 2014-07-04 A | 2014-07-20 A | 822-SM-S-L-1010 | 100% |  | 2014-12-07 | 2014-12-16 |  |  | W11 7 day site | 822_AB_W11v4 |
| 822-SM-S-L-1030 |  | Slipform shaft lining +20m to +40m | 10d | 2014-07-20 A | 2014-07-31 A | 822-SM-S-L-1020 | 100% |  | 2014-12-17 | 2014-12-28 |  |  | W11 7 day site | 822_AB_W11v4 |
| 822-SM-S-L-1040 |  | Slipform shaft lining +40m to +57.2m | 9d | 2014-07-31 A | 2014-08-10 A | 822-SM-S-L-1030 | 100% |  | 2014-12-29 | 2015-01-07 |  |  | W11 7 day site | 822_AB_W11v4 |
| 822-SM-S-L-1050 |  | Demobilise slipform temporary works | 12d | 2014-08-11 A | 2014-09-29 A | 822-SM-S-L-1040 | 100% |  | 2015-01-08 | 2015-01-21 |  |  |  | 822_AB_W11v4 |
|  | 6 | **Preparation Works** |  | 2014-09-22 | 2014-11-21 |  |  |  |  |  |  |  |  |  |
| 822-SM-S-P-1000 |  | Scaling of staricase shaft, coridors from L4 to bottom | 19d | 2014-09-22 A | 2014-11-21 A | 822-SM-S-L-1050 | 100% |  | 2014-11-01 | 2014-11-22 |  |  |  | 822_AB_W11v4 |
| 822-SM-S-P-1010 |  | Installation of movable safety net | 2d | 2014-10-15 A | 2014-10-20 A | 822-SM-S-L-1050 | 100% |  | 2014-11-19 | 2014-11-20 |  |  |  | 822_AB_W11v4 |
|  | 7 | **Track level to L11** |  | 2014-09-30 | 2014-11-06 |  |  |  |  |  |  |  |  |  |
| 822-SM-S-L11-1000 |  | Construction of nibs, canopy & hanger wall (blue area) | 4d | 2014-09-30 A | 2014-11-06 A | 822-SM-S-P-1010 | 100% |  | 2014-11-01 | 2014-11-05 |  |  |  | 822_AB_W11v4 |
| 822-SM-S-L11-1010 |  | Installation of nibs and precast stairs (green area) | 9d | 2014-10-29 A | 2014-11-06 A | 822-SM-S-L11-1000 FS-4d | 100% |  | 2014-11-05 | 2014-11-14 |  |  |  | 822_AB_W11v4 |
|  | 8 | **L11 to L10** |  | 2014-11-07 | 2014-12-09 |  |  |  |  |  |  |  |  |  |
| 822-SM-S-L10-1000 |  | Construction of lobby, nibs, canopy & hanger wall (blue area) | 4d | 2014-11-07 A | 2014-11-14 A | 822-SM-S-L11-1000 | 100% |  | 2014-12-24 | 2014-12-30 |  |  |  | 822_AB_W11v4 |
| 822-SM-S-L10-1020 |  | Installation of nibs and precast stairs (green area) | 7d | 2014-11-08 A | 2014-11-14 A | 822-SM-S-L10-1000, 822-SM-S-L11-1010 | 100% |  | 2014-12-31 | 2015-01-08 |  |  |  | 822_AB_W11v4 |
| 822-SM-S-L10-1010 |  | Construction of Service Ducts (yellow area) | 9d | 2014-12-06 A | 2014-12-09 A | 822-SM-S-L10-1000 FS+3d | 100% |  | 2015-01-05 | 2015-01-14 |  |  |  | 822_AB_W11v4 |
|  | 9 | **L10 to L9** |  | 2014-11-15 | 2014-12-13 |  |  |  |  |  |  |  |  |  |
| 822-SM-S-L9-1000 |  | Construction of lobby, nibs, canopy & hanger wall (blue area) | 7d | 2014-11-15 A | 2014-11-19 A | 822-SM-S-L10-1000 | 100% |  | 2014-12-31 | 2015-01-08 |  |  |  | 822_AB_W11v4 |
| 822-SM-S-L9-1020 |  | Installation of nibs and precast stairs (green area) | 7d | 2014-11-17 A | 2014-11-21 A | 822-SM-S-L9-1000, 822-SM-S-L10-1020 | 100% |  | 2015-01-09 | 2015-01-16 |  |  |  | 822_AB_W11v4 |
| 822-SM-S-L9-1010 |  | Construction of Service Ducts (yellow area) | 6d | 2014-12-10 A | 2014-12-13 A | 822-SM-S-L9-1000 FS+3d | 100% |  | 2015-01-13 | 2015-01-19 |  |  |  | 822_AB_W11v4 |

| ID | WBS | Activity | Duration | Start | Finish | Predecessors | Complete | Planned start | Planned finish | Total float | Calendar | 822_AB_W11v4 |
| --- | --- | --- | --- | --- | --- | --- | --- | --- | --- | --- | --- | --- |
|  | 10 | **L9 to L8** |  | 2014-11-20 | 2014-12-16 |  |  |  |  |  |  |  |
| 822-SM-S-L8-1000 |  | Construction of lobby, nibs, canopy & hanger wall (blue area) | 7d | 2014-11-20 A | 2014-11-24 A | 822-SM-S-L9-1000 | 100% | 2015-01-09 | 2015-01-16 |  |  | 822_AB_W11v4 |
| 822-SM-S-L8-1020 |  | Installation of nibs and precast stairs (green area) | 7d | 2014-11-21 A | 2014-11-24 A | 822-SM-S-L8-1000, 822-SM-S-L9-1020 | 100% | 2014-12-15 | 2014-12-22 |  |  | 822_AB_W11v4 |
| 822-SM-S-L8-1010 |  | Construction of Service Ducts (yellow area) | 6d | 2014-12-13 A | 2014-12-16 A | 822-SM-S-L8-1000 FS+3d | 100% | 2015-01-21 | 2015-01-27 |  |  | 822_AB_W11v4 |
|  | 11 | **L8 to L7** |  | 2014-11-25 | 2017-01-06 |  |  |  |  |  |  |  |
| 822-SM-S-L7-1000 |  | Construction of lobby, nibs, canopy & hanger wall (blue area) | 7d | 2014-11-25 A | 2014-11-28 A | 822-SM-S-L8-1000 | 100% | 2014-12-15 | 2014-12-22 |  |  | 822_AB_W11v4 |
| 822-SM-S-L7-1020 |  | Installation of nibs and precast stairs (green area) | 7d | 2014-11-26 A | 2014-11-29 A | 822-SM-S-L7-1000, 822-SM-S-L8-1020 | 100% | 2014-12-23 | 2015-01-02 |  |  | 822_AB_W11v4 |
| 822-SM-S-L7-1030 |  | Construction of sump pump room and water tank (pink area) | 36d | 2014-12-15 A | 2015-02-25 A | 822-SM-S-L6-1010 | 100% | 2015-01-14 | 2015-03-03 |  |  | 822_AB_W11v4 |
| 822-SM-S-L7-1010 |  | Construction of Service Ducts (yellow area) | 6d | 2014-12-16 A | 2014-12-20 A | 822-SM-S-L7-1000 FS+3d | 100% | 2015-01-02 | 2015-01-08 |  |  | 822_AB_W11v4 |
| 822-SM-S-L7-1040 |  | Removal of formwork and falsework for water tank | 12d | 2015-02-27 A | 2015-06-02 A | 822-SM-S-L7-1030 | 100% | 2015-03-06 | 2015-03-19 |  |  | 822_AB_W11v4 |
| 822-SM-S-L7-1050 |  | Testing of concrete water tightness for water tank | 14d | 2015-06-03 A | 2015-09-15 A | 822-SM-S-L7-1040 | 100% | 2015-06-03 | 2015-06-16 |  | W11 7 day no hols | 822_AB_W11v4 |
| 822-SM-S-L7-1060 |  | Waterproofing for water tank | 3d | 2015-09-01 A | 2015-09-15 A | 822-SM-S-L7-1050 | 100% | 2015-10-06 | 2015-10-09 |  |  | 822_AB_W11v4 |
| 822-SM-S-L7-1070 |  | Installation of Cat ladder for water tank | 5d | 2017-01-02 | 2017-01-06 | 822-SM-S-L7-1060 |  |  |  | 277d |  |  |
|  | 12 | **L7 to L6** |  | 2014-11-29 | 2017-01-06 |  |  |  |  |  |  |  |
| 822-SM-S-L6-1000 |  | Construction of lobby, nibs, canopy & hanger wall (blue area) | 7d | 2014-11-29 A | 2014-12-03 A | 822-SM-S-L7-1000 | 100% | 2014-12-23 | 2015-01-02 |  |  | 822_AB_W11v4 |
| 822-SM-S-L6-1020 |  | Installation of nibs and precast stairs (green area) | 7d | 2014-11-29 A | 2014-12-03 A | 822-SM-S-L6-1000, 822-SM-S-L7-1020 | 100% | 2015-01-03 | 2015-01-10 |  |  | 822_AB_W11v4 |
| 822-SM-S-L6-1010 |  | Construction of Service Ducts (yellow area) | 6d | 2014-12-22 A | 2014-12-29 A | 822-SM-S-L6-1000 FS+3d | 100% | 2015-01-02 | 2015-01-08 |  |  | 822_AB_W11v4 |
| 822-SM-S-L6-1030 |  | Construction of sump pump room and water tank (pink area) | 40d | 2015-02-27 A | 2015-03-30 A | 822-SM-S-L7-1030 | 100% | 2015-03-02 | 2015-04-17 |  |  | 822_AB_W11v4 |
| 822-SM-S-L6-1040 |  | Removal of formwork and falsework for water tank | 12d | 2015-04-01 A | 2015-06-05 A | 822-SM-S-L6-1030 | 100% | 2015-04-20 | 2015-05-04 |  |  | 822_AB_W11v4 |
| 822-SM-S-L6-1050 |  | Testing of concrete water tightness for water tank | 14d | 2015-06-06 A | 2015-09-15 A | 822-SM-S-L6-1040 | 100% | 2015-06-06 | 2015-06-19 |  | W11 7 day no hols | 822_AB_W11v4 |
| 822-SM-S-L6-1060 |  | Waterproofing for water tank | 3d | 2015-09-01 A | 2015-09-15 A | 822-SM-S-L6-1050 | 100% | 2015-10-06 | 2015-10-09 |  |  | 822_AB_W11v4 |
| 822-SM-S-L6-1070 |  | Installation of Cat ladder for water tank | 5d | 2017-01-02 | 2017-01-06 | 822-SM-S-L6-1060 |  |  |  | 277d |  |  |
|  | 13 | **L6 to L5** |  | 2014-12-04 | 2015-04-15 |  |  |  |  |  |  |  |
| 822-SM-S-L5-1000 |  | Construction of lobby, nibs, canopy & hanger wall (blue area) | 7d | 2014-12-04 A | 2014-12-11 A | 822-SM-S-L6-1000 | 100% | 2015-01-03 | 2015-01-10 |  |  | 822_AB_W11v4 |
| 822-SM-S-L5-1020 |  | Installation of nibs and precast stairs (green area) | 7d | 2014-12-04 A | 2014-12-08 A | 822-SM-S-L5-1000, 822-SM-S-L6-1020 | 100% | 2015-01-12 | 2015-01-19 |  |  | 822_AB_W11v4 |
| 822-SM-S-L5-1010 |  | Construction of Service Ducts (yellow area) | 6d | 2014-12-30 A | 2015-01-03 A | 822-SM-S-L5-1000 FS+3d | 100% | 2015-01-02 | 2015-01-08 |  |  | 822_AB_W11v4 |
| 822-SM-S-L5-1030 |  | Construction of sump pump room (pink area) | 12d | 2015-04-01 A | 2015-04-15 A | 822-SM-S-L6-1030 | 100% | 2015-04-20 | 2015-05-04 |  |  | 822_AB_W11v4 |

| ID | WBS | Activity | Duration | Start | Finish | Predecessors | Complete | Planned start | Planned finish | Total float | Free float | Constraint | 822_AB_W11v4 |
| --- | --- | --- | --- | --- | --- | --- | --- | --- | --- | --- | --- | --- | --- |
|  | 14 | **L5 to +55.85mPD** |  | 2014-12-09 | 2015-01-29 |  |  |  |  |  |  |  |  |
| 822-SM-S-L4-1000 |  | Construction of lobby, nibs, canopy & hanger wall (blue area) | 7d | 2014-12-09 A | 2014-12-12 A | 822-SM-S-L5-1000 | 100% | 2015-01-12 | 2015-01-19 |  |  |  | 822_AB_W11v4 |
| 822-SM-S-L4-1020 |  | Installation of nibs and precast stairs (green area) | 6d | 2014-12-09 A | 2014-12-13 A | 822-SM-S-L4-1000, 822-SM-S-L5-1020 | 100% | 2015-01-20 | 2015-01-26 |  |  |  | 822_AB_W11v4 |
| 822-SM-S-L4-1010 |  | Construction of Service Ducts (yellow area) | 6d | 2015-01-05 A | 2015-01-29 A | 822-SM-S-L4-1000 FS+3d | 100% | 2015-01-19 | 2015-01-24 |  |  |  | 822_AB_W11v4 |
|  | 15 | **+55.85mPD to +58.55mPD (L4)** |  | 2014-12-09 | 2015-04-21 |  |  |  |  |  |  |  |  |
| 822-SM-S-L4-1030 |  | Construction of lobby, nibs, & hanger wall (blue area) | 7d | 2014-12-09 A | 2014-12-12 A | 822-SM-S-L4-1000 | 100% | 2015-01-20 | 2015-01-27 |  |  |  | 822_AB_W11v4 |
| 822-SM-S-L4-1040 |  | Installation of nibs and precast stairs to +57.2mPD (green area) | 3d | 2014-12-09 A | 2014-12-13 A | 822-SM-S-L4-1030 FS-3d | 100% | 2015-01-24 | 2015-01-27 |  |  |  | 822_AB_W11v4 |
| 822-SM-S-L4-1050 |  | Insitu Stair +57.2 to +58.55mPD (green area) | 3d | 2015-04-18 A | 2015-04-21 A | 822-SM-S-L4-1040 | 100% | 2015-04-20 | 2015-04-22 |  |  |  | 822_AB_W11v4 |
|  | 16 | **Finishing Works** |  | 2014-11-29 | 2017-11-01 |  |  |  |  |  |  |  |  |
| 822-SM-S-FW-0050 |  | Concrete Remedial Works (from shaft base to L4 soffit) | 116d | 2014-11-29 A | 2015-05-28 A | 822-SM-S-P-1000 FS+6d | 100% | 2014-12-15 | 2015-05-11 |  |  |  | 822_AB_W11v4 |
| 822-SM-S-FW-1000 |  | ABWF works from Shaft base to L4 Soffit (including shaft cat ladder installation) | 98d | 2014-12-31 A | 2015-05-28 A | 822-SM-S-L5-1030 FF+4d, 822-SM-S-FW-0050 FF+6d | 100% | 2015-01-02 | 2015-05-05 |  |  |  | 822_AB_W11v4 |
| 822-SM-S-FW-1010 |  | Finishing work after DC | 24d | 2017-07-12 | 2017-08-09 | 822-SM-VB5-FW-1160 |  |  |  | -1003d | 0d |  |  |
| 822-SM-S-FW-1020 |  | Undertake tests and pass Statutory Inspections | 72d | 2017-08-09 | 2017-11-01 | 822-SM-S-FW-1010 |  |  |  | 21.12d |  |  |  |
|  | 3 | **VB5** |  | 2014-04-17 | 2017-11-01 |  |  |  |  |  |  |  |  |
|  | 1 | **L1-GF (Gridline A-D)** |  | 2014-04-17 | 2014-10-11 |  |  |  |  |  |  |  |  |
| 822-SM-VB5-1A-1000 |  | Complete slab and beam | 22d | 2014-04-17 A | 2014-06-12 A | 822-KD-SS-1000 SS | 100% | 2014-09-01 | 2014-09-26 |  |  |  | 822_AB_W11v4 |
| 822-SM-VB5-1A-1010 |  | Double slab at GL 1-2 | 16d | 2014-05-21 A | 2014-06-27 A | 822-SM-VB5-1A-1000 | 100% | 2014-09-27 | 2014-10-17 |  |  |  | 822_AB_W11v4 |
| 822-SM-VB5-1A-1020 |  | Mass concrete fill at GL 2-4 | 15d | 2014-06-03 A | 2014-06-09 A | 822-SM-VB5-1A-1010 SS+2d | 100% | 2014-09-30 | 2014-10-18 |  |  |  | 822_AB_W11v4 |
| 822-SM-VB5-1A-1030 |  | Dismantle formwork and falsework | 18d | 2014-06-14 A | 2014-10-11 A | 822-SM-VB5-1A-1020, 822-SM-VB5-1A-1010 | 100% | 2014-10-20 | 2014-11-08 |  |  |  | 822_AB_W11v4 |
|  | 2 | **GF-U1 (Gridline A-C)** |  | 2014-06-11 | 2015-03-02 |  |  |  |  |  |  |  |  |
| 822-SM-VB5-GA-1000 |  | Perimeter wall | 24d | 2014-06-11 A | 2014-10-15 A | 822-SM-VB5-1A-1010 FS+7d, 822-SM-VB5-1A-1020 | 100% | 2014-10-27 | 2014-11-22 |  |  |  | 822_AB_W11v4 |
| 822-SM-VB5-GA-1010 |  | Internal walls columns and water tanks | 34d | 2014-06-18 A | 2014-11-25 A | 822-SM-VB5-GA-1000 SS+4d | 100% | 2014-10-31 | 2014-12-09 |  |  |  | 822_AB_W11v4 |
| 822-SM-VB5-GA-1020 |  | Beams and slab | 32d | 2014-06-18 A | 2014-09-15 A | 822-SM-VB5-GA-1010 SS+7d | 100% | 2014-11-08 | 2014-12-15 |  |  |  | 822_AB_W11v4 |
| 822-SM-VB5-GA-1030 |  | Dismantle formwork | 15d | 2014-08-05 A | 2014-11-04 A | 822-SM-VB5-GA-1020 FS-4d, 822-SM-VB5-1A-1030 | 100% | 2014-12-11 | 2014-12-30 |  |  |  | 822_AB_W11v4 |
| 822-SM-VB5-GA-1038 |  | Concrete Remedial Works (from L4 to U1 soffit) | 78d | 2014-11-05 A | 2015-02-06 A | 822-SM-VB5-GA-1030 | 100% | 2014-12-18 | 2015-03-28 |  |  |  | 822_AB_W11v4 |
| 822-SM-VB5-GA-1040 |  | ABWF from L4 to U1 soffit | 72d | 2014-12-15 A | 2015-03-02 A | 822-SM-VB5-GA-1030, 822-SM-VB5-GA-1038 FF | 100% | 2015-01-02 | 2015-04-02 |  |  | start on or after 2014-12-01 | 822_AB_W11v4 |

| ID | WBS | Activity | Duration | Start | Finish | Predecessors | Complete | Planned start | Planned finish | 822_AB_W11v4 |
| --- | --- | --- | --- | --- | --- | --- | --- | --- | --- | --- |
|  | 13 | **L4 Raft Footing (Gridline C-F)** |  | 2014-09-22 | 2014-11-15 |  |  |  |  |  |
| 822-SM-VB5-L4C-1000 |  | Clear Concrete blocks | 8d | 2014-09-22 A | 2014-10-04 A |  | 100% | 2014-09-22 | 2014-09-30 | 822_AB_W11v4 |
| 822-SM-VB5-L4C-1010 |  | CJ Preparation | 7d | 2014-09-29 A | 2014-10-08 A | 822-SM-VB5-L4C-1000 FS-2d | 100% |  |  | 822_AB_W11v4 |
| 822-SM-VB5-L4C-1020 |  | Waterproofing | 9d | 2014-10-03 A | 2014-10-18 A | 822-SM-VB5-L4C-1010 SS+2d | 100% | 2014-10-03 | 2014-10-13 | 822_AB_W11v4 |
| 822-SM-VB5-L4C-1040 |  | Formwork, Falsework and Rebar fixing | 20d | 2014-10-07 A | 2014-11-14 A | 822-SM-VB5-L4C-1010 FS-2d | 100% | 2014-10-07 | 2014-10-29 | 822_AB_W11v4 |
| 822-SM-VB5-L4C-1030 |  | Temporary Deck and Platform | 4d | 2014-10-09 A | 2014-10-13 A | 822-SM-VB5-L4C-1010 | 100% |  |  | 822_AB_W11v4 |
| 822-SM-VB5-L4C-1050 |  | Concrete pour | 1d | 2014-11-15 A | 2014-11-15 A | 822-SM-VB5-L4C-1040 | 100% | 2014-12-31 | 2014-12-31 | 822_AB_W11v4 |
|  | 14 | **Perimeter Walls from L4 to L2 (Gridline D-F)** |  | 2014-11-17 | 2015-03-16 |  |  |  |  |  |
| 822-SM-VB5-L2D-1000 |  | L4 (+58.5 to +62mPD) - vertical blinding | 10d | 2014-11-17 A | 2014-11-27 A | 822-SM-VB5-L4C-1050 | 100% | 2015-01-02 | 2015-01-13 | 822_AB_W11v4 |
| 822-SM-VB5-L2D-1010 |  | L4 (+58.5 to +62mPD) - Perimeter wall | 24d | 2014-11-17 A | 2014-12-13 A | 822-SM-VB5-L2D-1000 SS | 100% | 2015-01-02 | 2015-01-29 | 822_AB_W11v4 |
| 822-SM-VB5-L2D-1020 |  | L3 (+62 to +65.5mPD) - vertical blinding | 10d | 2014-12-15 A | 2014-12-27 A | 822-SM-VB5-L2D-1010 | 100% | 2015-01-02 | 2015-01-13 | 822_AB_W11v4 |
| 822-SM-VB5-L2D-1030 |  | L3 (+62 to +65.5mPD) - Perimeter Wall | 14d | 2014-12-27 A | 2015-01-12 A | 822-SM-VB5-L2D-1020 | 100% | 2015-01-14 | 2015-01-29 | 822_AB_W11v4 |
| 822-SM-VB5-L2D-1040 |  | L3 to L2 (+65.5 to +68.8mPD) - vertical blinding | 10d | 2015-01-13 A | 2015-02-28 A | 822-SM-VB5-L2D-1030 | 100% | 2015-01-19 | 2015-01-29 | 822_AB_W11v4 |
| 822-SM-VB5-L2D-1050 |  | L3 to L2 (+65.5 to +68.8mPD) - perimeter wall | 14d | 2015-02-28 A | 2015-03-16 A | 822-SM-VB5-L2D-1040 | 100% | 2015-03-06 | 2015-03-21 | 822_AB_W11v4 |
|  | 15 | **L4-L3 (Gridline D-F)** |  | 2015-01-15 | 2015-05-28 |  |  |  |  |  |
| 822-SM-VB5-L3D-1010 |  | Internal walls and columns (including inclined columns) | 25d | 2015-01-15 A | 2015-02-25 A | 822-SM-S-L4-1040 | 100% | 2015-01-19 | 2015-02-23 | 822_AB_W11v4 |
| 822-SM-VB5-L3D-1000 |  | L4 Slab (between GL 2-3) | 7d | 2015-01-24 A | 2015-01-28 A | 822-SM-VB5-L2D-1010, 822-SM-S-L4-1050 | 100% | 2015-02-05 | 2015-02-12 | 822_AB_W11v4 |
| 822-SM-VB5-L3D-1020 |  | L3 Beam and Slab | 24d | 2015-01-31 A | 2015-02-25 A | 822-SM-VB5-L2D-1030, 822-SM-VB5-L3D-1000 | 100% | 2015-02-05 | 2015-03-11 | 822_AB_W11v4 |
| 822-SM-VB5-L3D-1040 |  | Removal of falsework and formwork | 17d | 2015-02-26 A | 2015-04-15 A | 822-SM-VB5-L3D-1020 | 100% | 2015-03-05 | 2015-03-24 | 822_AB_W11v4 |
| 822-SM-VB5-L3D-1060 |  | Concrete Remedial Works (from L4 to L3 soffit) | 20d | 2015-03-23 A | 2015-05-28 A | 822-SM-VB5-L3D-1020, 822-SM-VB5-L3D-1070 FF-3d, 822-SM-VB5-L3D-1040 | 100% | 2015-05-11 | 2015-06-02 | 822_AB_W11v4 |
| 822-SM-VB5-L3D-1030 |  | Staircase (after water tank at L6 & L7) | 13d | 2015-04-18 A | 2015-05-22 A | 822-SM-VB5-L3D-1000, 822-SM-S-L5-1030 | 100% | 2015-04-22 | 2015-05-07 | 822_AB_W11v4 |
| 822-SM-VB5-L3D-1070 |  | ABWF Works from L4 to L3 Soffit | 15d | 2015-04-30 A | 2015-05-28 A | 822-SM-S-FW-1000, 822-SM-VB5-L3D-1000 FS-9d, 822-SM-VB5-L3D-1010 FS-9d, 822-SM-VB5-L3D-1020 FS-9d, 822-SM-VB5-L3D-1030 FS-9d | 100% | 2015-05-18 | 2015-06-03 | 822_AB_W11v4 |
|  | 16 | **L3-L2 (Gridline D-F)** |  | 2015-02-26 | 2015-07-11 |  |  |  |  |  |
| 822-SM-VB5-L2D-2000 |  | Internal walls and columns | 24d | 2015-02-26 A | 2015-03-28 A | 822-SM-VB5-L3D-1020 FS-12d | 100% | 2015-03-05 | 2015-04-01 | 822_AB_W11v4 |
| 822-SM-VB5-L2D-2010 |  | L2 Beam and Slab | 14d | 2015-03-16 A | 2015-03-28 A | 822-SM-VB5-L2D-1050, 822-SM-VB5-L3D-1020 FS+1d | 100% | 2015-03-19 | 2015-04-03 | 822_AB_W11v4 |
| 822-SM-VB5-L2D-2040 |  | Removal of falswork and formwork | 17d | 2015-04-22 A | 2015-05-22 A | 822-SM-VB5-L2D-2010 | 100% | 2015-05-02 | 2015-05-21 | 822_AB_W11v4 |
| 822-SM-VB5-L2D-2025 |  | Concrete Remedial Works (from L3 to L2 soffit) | 15d | 2015-05-18 A | 2015-05-28 A | 822-SM-VB5-L2D-2010, 822-SM-VB5-L2D-2000, 822-SM-VB5-L3D-1060, 822-SM-VB5-L2D-2030 FF-3d, 822-SM-VB5-L2D-2040 | 100% | 2015-06-10 | 2015-06-27 | 822_AB_W11v4 |
| 822-SM-VB5-L2D-2030 |  | ABWF Works from L3 to L2 Soffit | 15d | 2015-05-21 A | 2015-05-28 A | 822-SM-VB5-L2D-2020 FS-9d, 822-SM-VB5-L2D-2010 FS-9d, 822-SM-VB5-L2D-2000 FS-9d, 822-SM-VB5-L3D-1070 | 100% | 2015-06-02 | 2015-06-18 | 822_AB_W11v4 |
| 822-SM-VB5-L2D-2020 |  | Staircase | 13d | 2015-05-23 A | 2015-07-11 A | 822-SM-VB5-L3D-1030, 822-SM-VB5-L3D-1020 | 100% | 2015-06-12 | 2015-06-27 | 822_AB_W11v4 |

| ID | WBS | Activity | Duration | Start | Finish | Predecessors | Complete | Remaining | Planned start | Planned finish | Total float | Free float | 822_AB_W11v4 | .JHG Text 01 |
| --- | --- | --- | --- | --- | --- | --- | --- | --- | --- | --- | --- | --- | --- | --- |
|  | 17 | **L2-L1 (Gridline D-F)** |  | 2015-04-08 | 2015-10-31 |  |  |  |  |  |  |  |  |  |
| 822-SM-VB5-L1D-1000 |  | Perimeter wall (+70.5 to +77.7mPD) | 20d | 2015-04-08 A | 2015-05-29 A | 822-SM-VB5-L2D-1050, 822-SM-VB5-L2D-2010 | 100% |  | 2015-04-22 | 2015-05-15 |  |  | 822_AB_W11v4 |  |
| 822-SM-VB5-L1D-1030 |  | Internal walls and columns | 26d | 2015-04-08 A | 2015-05-29 A | 822-SM-VB5-L1D-1020 FS-7d | 100% |  | 2015-05-09 | 2015-06-08 |  |  | 822_AB_W11v4 |  |
| 822-SM-VB5-L1D-1010 |  | Install re-propping at +74mPD | 4d | 2015-04-27 A | 2015-04-30 A | 822-SM-VB5-L1D-1000 FS-7d | 100% |  | 2015-05-12 | 2015-05-15 |  |  | 822_AB_W11v4 |  |
| 822-SM-VB5-L1D-1020 |  | Remove strut at +75mPD | 4d | 2015-04-30 A | 2015-05-12 A | 822-SM-VB5-L1D-1010 | 100% |  | 2015-05-16 | 2015-05-20 |  |  | 822_AB_W11v4 |  |
| 822-SM-VB5-L1D-1040 |  | L1 Beam and Slab | 19d | 2015-05-14 A | 2015-05-29 A | 822-SM-VB5-L2D-2010, 822-SM-VB5-L1D-1000, 822-SM-VB5-L1D-1030 FS-9d | 100% |  | 2015-06-12 | 2015-07-06 |  |  | 822_AB_W11v4 |  |
| 822-SM-VB5-L1D-1060 |  | Removal of falsework and formwork | 17d | 2015-06-01 A | 2015-06-19 A | 822-SM-VB5-L1D-1040 | 100% |  |  |  |  |  | 822_AB_W11v4 |  |
| 822-SM-VB5-L1D-1070 |  | concrete Remedial Works (from L2 to L1 soffit) | 12d | 2015-06-03 A | 2015-06-16 A | 822-SM-VB5-L1D-1080 FF-3d, 822-SM-VB5-L2D-2025 | 100% |  |  |  |  |  | 822_AB_W11v4 |  |
| 822-SM-VB5-L1D-1080 |  | ABWF Works from L2 to L1 Soffit | 12d | 2015-06-08 A | 2015-06-22 A | 822-SM-VB5-L1D-1060 FF, 822-SM-VB5-L2D-2030 | 100% |  | 2015-09-01 | 2015-09-14 |  |  | 822_AB_W11v4 |  |
| 822-SM-VB5-L1D-1050 |  | Staircase | 15d | 2015-07-13 A | 2015-09-07 A | 822-SM-VB5-L2D-2020, 822-SM-VB5-L2D-2010 | 100% |  | 2015-08-13 | 2015-08-29 |  |  | 822_AB_W11v4 |  |
| 822-SM-VB5-L1D-1100 |  | GF Construction +85.2 | 3d | 2015-08-03 A | 2015-08-06 A |  | 100% |  | 2015-06-01 | 2015-06-03 |  |  | 822_AB_W11v4 |  |
| 822-SM-VB5-L1D-1110 |  | Upper G/F Construction +86.7 | 16d | 2015-08-07 A | 2015-08-22 A |  | 100% |  | 2015-06-01 | 2015-06-18 |  |  | 822_AB_W11v4 |  |
| 822-SM-VB5-L1D-2020 |  | G/F - U1 Construction GL 1-3 | 19d | 2015-08-24 A | 2015-09-12 A |  | 100% |  | 2015-06-01 | 2015-06-23 |  |  | 822_AB_W11v4 |  |
| 822-SM-VB5-GA-2000 |  | G/F-U1 Construction GL 3-4 | 15d | 2015-09-07 A | 2015-09-30 A | 822-SM-VB5-L1D-2000 FF+9d | 100% |  | 2015-10-31 | 2015-11-17 |  |  | 822_AB_W11v4 | PC |
| 822-SM-VB5-L1D-2030 |  | G/F - U1 Construction GL 3-4 | 19d | 2015-09-07 A | 2015-09-30 A |  | 100% |  | 2015-06-01 | 2015-06-23 |  |  | 822_AB_W11v4 |  |
| 822-SM-VB5-L1D-1120 |  | CLP repair cable withing Shing Mun work area | 20d | 2015-10-12 A | 2015-10-31 A |  | 100% |  | 2015-06-01 | 2015-06-24 |  |  | 822_AB_W11v4 |  |
|  | 18 | **L1-GF (Gridline D-F)** |  | 2015-06-16 | 2017-01-02 |  |  |  |  |  |  |  |  |  |
| 822-SM-VB5-GD-1020 |  | Install re-propping at +81.2mPD | 4d | 2015-06-16 A | 2015-06-19 A | 822-SM-VB5-GD-1010 FS-6d | 100% |  |  |  |  |  | 822_AB_W11v4 |  |
| 822-SM-VB5-GD-1000 |  | Remove strut at +78.7mPD | 4d | 2015-06-29 A | 2015-07-03 A | 822-SM-VB5-L1D-1040 | 100% |  | 2015-06-01 | 2015-06-04 |  |  | 822_AB_W11v4 |  |
| 822-SM-VB5-GD-1010 |  | Perimeter wall (+77.7 to +85.2mPD) | 19d | 2015-07-03 A | 2015-07-31 A | 822-SM-VB5-L1D-1000, 822-SM-VB5-L1D-1040 | 100% |  | 2015-08-01 | 2015-08-22 |  |  | 822_AB_W11v4 |  |
| 822-SM-VB5-GD-1040 |  | Internal walls and columns | 18d | 2015-07-06 A | 2015-08-05 A | 822-SM-VB5-GD-1010 FS-10d | 100% |  | 2015-08-12 | 2015-09-01 |  |  | 822_AB_W11v4 |  |
| 822-SM-VB5-GD-1030 |  | Remove strut at +82.2mPD | 4d | 2015-07-13 A | 2015-07-16 A | 822-SM-VB5-GD-1020 | 100% |  | 2015-08-17 | 2015-08-20 |  |  | 822_AB_W11v4 |  |
| 822-SM-VB5-GD-1050 |  | G/F Beam (+85.2mPD) | 12d | 2015-07-16 A | 2015-08-06 A | 822-SM-VB5-GD-1010, 822-SM-VB5-GD-1030 | 100% |  | 2015-08-24 | 2015-09-05 |  |  | 822_AB_W11v4 |  |
| 822-SM-VB5-GD-1060 |  | Remove strut at +85.5mPD | 3d | 2015-07-25 A | 2015-08-10 A | 822-SM-VB5-GD-1050 | 100% |  | 2015-09-03 | 2015-09-05 |  |  | 822_AB_W11v4 |  |
| 822-SM-VB5-GD-1081 |  | Perimeter wall (GL 2-4, +85.2 to +86.7mPD) | 4d | 2015-08-07 A | 2015-08-19 A | 822-SM-VB5-GD-1050 | 100% |  | 2015-09-03 | 2015-09-07 |  |  | 822_AB_W11v4 |  |
| 822-SM-VB5-GD-1082 |  | Perimeter Wall (GL 1-2, +85.2 to +86.7mPD) | 4d | 2015-08-07 A | 2015-08-19 A | 822-SM-VB5-GD-1081 | 100% |  | 2015-09-08 | 2015-09-11 |  |  | 822_AB_W11v4 |  |
| 822-SM-VB5-GD-1083 |  | G/F Slab and Beam (GL 3-4, +85.2 to +86.7mPD) | 4d | 2015-08-10 A | 2015-08-19 A | 822-SM-VB5-GD-1082 | 100% |  | 2015-09-01 | 2015-09-04 |  |  | 822_AB_W11v4 |  |
| 822-SM-VB5-GD-1090 |  | G/F Slab and Beam (GL1-3, +85.2 to +86.7mPD) | 4d | 2015-08-10 A | 2015-08-19 A | 822-SM-VB5-GD-1050, 822-SM-VB5-GD-1083 | 100% |  | 2015-09-05 | 2015-09-09 |  |  | 822_AB_W11v4 |  |
| 822-SM-VB5-GD-1110 |  | Removal of formwork and falsework | 17d | 2015-08-31 A | 2015-09-15 A | 822-SM-VB5-GD-1083, 822-SM-VB5-GD-1090 | 100% |  | 2015-10-02 | 2015-10-22 |  |  | 822_AB_W11v4 |  |
| 822-SM-VB5-GD-1080 |  | Staircase | 0d | 2015-09-07 A | 2017-01-02 | 822-SM-VB5-L1D-1050, 822-SM-VB5-L1D-1040 |  | 0d | 2015-10-02 | 2015-10-02 | -1073.12d | 0d |  |  |
| 822-SM-VB5-GD-1120 |  | ABWF Works from L1 to G/F soffit | 18d | 2015-09-30 A | 2015-10-22 A | 822-SM-VB5-GD-1110 FF+6d, 822-SM-VB5-L1D-1080 | 100% |  | 2015-10-08 | 2015-10-29 |  |  | 822_AB_W11v4 |  |

| ID | WBS | Activity | Duration | Start | Finish | Predecessors | Complete | Remaining | Planned start | Planned finish | Total float | Free float | Constraint | .JHG Text 01 | 822_AB_W11v4 |
| --- | --- | --- | --- | --- | --- | --- | --- | --- | --- | --- | --- | --- | --- | --- | --- |
|  | 19 | **Removal of Noise Enclosure & Gantry Crane** |  | 2015-08-24 | 2017-01-20 |  |  |  |  |  |  |  |  |  |  |
| 822-SM-VB5-RE-2010 |  | Preparation Work to remove roof panel | 6d | 2015-08-24 A | 2015-08-30 A |  | 100% |  | 2015-11-16 | 2015-11-21 |  |  | start on 2015-11-16 | PC | 822_AB_W11v4 |
| 822-SM-VB5-RE-0050 |  | Preparation and Demobilisation of Gantry Crane (E&M) | 5d | 2015-08-31 A | 2015-09-10 A | 822-SM-VB5-GD-1082 | 100% |  | 2015-09-01 | 2015-09-05 |  |  |  |  | 822_AB_W11v4 |
| 822-SM-VB5-RE-1000 |  | Removal of Gantry Crane (lifting operation at GL3-4) | 3d | 2015-08-31 A | 2015-09-10 A | 822-SM-VB5-RE-0050 FF | 100% |  | 2015-10-07 | 2015-10-09 |  |  |  |  | 822_AB_W11v4 |
| 822-SM-VB5-RE-2020 |  | Remove roof panel and Gantry crane | 7d | 2015-08-31 A | 2015-09-08 A |  | 100% |  | 2015-11-16 | 2015-11-23 |  |  | start on 2015-11-16 | PC | 822_AB_W11v4 |
| 822-SM-VB5-RE-2030 |  | Cut and remove Granty steel truss | 2d | 2015-09-10 A | 2015-09-12 A |  | 100% |  | 2015-11-16 | 2015-11-17 |  |  | start on 2015-11-16 | PC | 822_AB_W11v4 |
| 822-SM-VB5-RE-2100 |  | Re-instate roof panel | 2d | 2015-09-10 A | 2015-09-12 A |  | 100% |  | 2015-11-16 | 2015-11-17 |  |  | start on 2015-11-16 | PC | 822_AB_W11v4 |
| 822-SM-VB5-RE-1001 |  | Removal of Noise Enclosure Roof Panel & Bracings (GL2-4, C-F) (Sequence changed) | 0d | 2015-10-31 A | 2015-10-31 A | 822-SM-VB5-GD-1081 | 100% |  |  |  |  |  |  |  | 822_AB_W11v4 |
| 822-SM-VB5-RE-1002 |  | Removal of Noise Enclosure Roof Panel & Bracings (GL1-2, C-F) (Sequence changed) | 0d | 2015-10-31 A | 2015-10-31 A | 822-SM-VB5-RE-1001, 822-SM-VB5-GD-1082 | 100% |  |  |  |  |  |  |  | 822_AB_W11v4 |
| 822-SM-VB5-RE-1003 |  | Removal of Noise Enclosure Main Frame (GL F) (Sequence changed) | 0d | 2015-10-31 A | 2015-10-31 A | 822-SM-VB5-RE-1002, 822-SM-VB5-RE-1000 | 100% |  |  |  |  |  |  |  | 822_AB_W11v4 |
| 822-SM-VB5-RE-1004 |  | Removal of Noise Enclosure Main Frame (GL D-E) (Sequence changed) | 0d | 2015-10-31 A | 2015-10-31 A | 822-SM-VB5-RE-1003 | 100% |  |  |  |  |  |  |  | 822_AB_W11v4 |
| 822-SM-VB5-RE-1010 |  | Removal of Noise Enclosure Main Truss (GL C) (Sequence changed) | 0d | 2015-10-31 A | 2015-10-31 A | 822-SM-VB5-RE-1004 | 100% |  |  |  |  |  |  |  | 822_AB_W11v4 |
| 822-SM-VB5-RE-1020 |  | Noise Enclosure Removal (GL A-C) (Sequence changed) | 0d | 2015-10-31 A | 2015-10-31 A | 822-SM-VB5-RE-1010 | 100% |  |  |  |  |  |  |  | 822_AB_W11v4 |
| 822-SM-VB5-RE-2050 |  | Noise Enclosure Remove side panels GL D-F | 6d | 2015-11-16 A | 2015-11-21 A |  | 100% |  |  |  |  |  | start on 2015-11-16 | PC | 822_AB_W11v4 |
| 822-SM-VB5-RE-2060 |  | Noise Enclosure Remove roof panels GL D-F | 6d | 2015-11-23 A | 2015-11-28 A | 822-SM-VB5-RE-2050 | 100% |  |  |  |  |  |  | PC | 822_AB_W11v4 |
| 822-SM-VB5-RE-2070 |  | Noise Enclosure Remove side panels GL A-D | 6d | 2015-11-30 A | 2017-01-06 | 822-SM-VB5-RE-2060 |  | 5d | 2015-11-30 | 2015-12-05 | -1090.12d | 0d |  | PC |  |
| 822-SM-VB5-RE-2080 |  | Noise Enclosure Remove roof panels GL A-D | 6d | 2017-01-07 | 2017-01-13 | 822-SM-VB5-RE-2070 |  |  |  |  | -1090.12d | 0d |  | PC |  |
| 822-SM-VB5-RE-2090 |  | Noise Enclosure Remove Steel Frame GL A-D | 6d | 2017-01-14 | 2017-01-20 | 822-SM-VB5-RE-2080 |  |  |  |  | -1090.12d | 5.88d |  | PC |  |
|  | 20 | **GF-U1 (Gridline C-F)** |  | 2015-08-20 | 2017-01-02 |  |  |  |  |  |  |  |  |  |  |
| 822-SM-VB5-U1C-0050 |  | Perimeter Wall (GL E-F) | 10d | 2015-08-20 A | 2015-09-05 A | 822-SM-VB5-GD-1010, 822-SM-VB5-GD-1090, 822-SM-VB5-RE-1000 | 100% |  | 2015-10-02 | 2015-10-13 |  |  |  |  | 822_AB_W11v4 |
| 822-SM-VB5-U1C-1010 |  | U1 Beam and Slab (GL D-F) | 18d | 2015-08-20 A | 2015-09-30 A | 822-SM-VB5-RE-1000, 822-SM-VB5-GD-1090 | 100% |  | 2015-09-09 | 2015-09-30 |  |  |  |  | 822_AB_W11v4 |
| 822-SM-VB5-U1C-1020 |  | U1 Beam and Slab (GL C-D) | 18d | 2015-08-20 A | 2015-09-30 A | 822-SM-VB5-U1C-1010 | 100% |  | 2015-10-24 | 2015-11-13 |  |  |  |  | 822_AB_W11v4 |
| 822-SM-VB5-U1C-1000 |  | Perimeter wall (GL C-E), columns and internal walls | 18d | 2015-09-06 A | 2015-09-30 A | 822-SM-VB5-GD-1010, 822-SM-VB5-GD-1090, 822-SM-VB5-RE-1000, 822-SM-VB5-U1C-0050 | 100% |  | 2015-10-14 | 2015-11-04 |  |  |  |  | 822_AB_W11v4 |
| 822-SM-VB5-U1C-1015 |  | Removal of formwork and falsework (GL D-F) (Sequence changed) | 0d | 2015-10-02 A | 2015-10-31 A | 822-SM-VB5-U1C-1010 | 100% |  | 2015-10-02 | 2015-10-02 |  |  |  |  | 822_AB_W11v4 |
| 822-SM-VB5-U1C-1025 |  | Removal of formwork and falsework (GL C-D) (Sequence changed) | 0d | 2015-10-02 A | 2015-10-31 A | 822-SM-VB5-U1C-1020 | 100% |  | 2015-10-02 | 2015-10-02 |  |  |  |  | 822_AB_W11v4 |
| 822-SM-VB5-U1C-1035 |  | Concrete Remedial Works (from L1 to U1 soffit) | 24d | 2015-10-15 A | 2015-10-30 A | 822-SM-VB5-U1C-0050, 822-SM-VB5-L1D-1070, 822-SM-VB5-U1C-1040 FF-3d | 100% |  | 2015-10-15 | 2015-11-12 |  |  |  |  | 822_AB_W11v4 |
| 822-SM-VB5-U1C-1040 |  | ABWF works from G/F to U1 Soffit (Sequence changed) | 0d | 2015-10-27 A | 2015-11-06 A | 822-SM-VB5-U1C-1015 FF+6d, 822-SM-VB5-U1C-1025 FF+6d, 822-SM-VB5-GD-1120, 822-SM-VB5-U1C-1030 | 100% |  | 2015-10-27 | 2015-10-27 |  |  |  |  | 822_AB_W11v4 |
| 822-SM-VB5-U1C-1030 |  | Staircase | 0d | 2017-01-02 | 2017-01-02 | 822-SM-VB5-GD-1080, 822-SM-VB5-GD-1090 |  |  |  |  | -1073.12d | 0d |  |  |  |

| ID | WBS | Activity | Type | Duration | Start | Finish | Predecessors | Complete | Remaining | Planned start | Planned finish | Total float | Free float | Constraint | Calendar | 822_AB_W11v4 | .JHG Text 01 |
| --- | --- | --- | --- | --- | --- | --- | --- | --- | --- | --- | --- | --- | --- | --- | --- | --- | --- |
|  | 21 | **U1-U2 (Gridline A-F)** |  |  | 2014-08-05 | 2017-01-06 |  |  |  |  |  |  |  |  |  |  |  |
| 822-SM-VB5-U2A-1000 |  | Perimeter wall, columns and internal walls (GL A-C) |  | 34d | 2014-08-05 A | 2014-11-20 A |  | 100% |  | 2014-09-22 | 2014-11-01 |  |  |  |  | 822_AB_W11v4 |  |
| 822-SM-VB5-U2A-1010 |  | U2 Beam and Slab (GL A-B) |  | 24d | 2014-10-09 A | 2014-12-08 A |  | 100% |  | 2014-10-13 | 2014-11-08 |  |  |  |  | 822_AB_W11v4 |  |
| 822-SM-VB5-U2A-1015 |  | Removal of formwork and falsework (GL A-B) |  | 17d | 2014-12-09 A | 2015-01-19 A | 822-SM-VB5-U2A-1010 | 100% |  | 2015-01-23 | 2015-02-11 |  |  |  |  | 822_AB_W11v4 |  |
| 822-SM-VB5-U2A-1028 |  | Concrete Remedial Works (GL A-B) (from U1 to U2 soffit) |  | 35d | 2014-12-30 A | 2015-01-17 A | 822-SM-VB5-U2A-1010 FS+18d, 822-SM-VB5-U2A-1000, 822-SM-VB5-U2A-1015 | 100% |  | 2015-01-08 | 2015-02-24 |  |  |  |  | 822_AB_W11v4 |  |
| 822-SM-VB5-U2A-1030 |  | ABWF from U1 to Roof (GL A-B) |  | 22d | 2015-01-31 A | 2015-03-05 A | 822-SM-VB5-U2A-1010, 822-SM-VB5-GA-1040 FF, 822-SM-VB5-U2A-1028 FF, 822-SM-VB5-U2A-1015 FF+6d | 100% |  | 2015-02-02 | 2015-03-05 |  |  |  |  | 822_AB_W11v4 |  |
| 822-SM-VB5-U2B-1000 |  | Perimeter wall, columns and internal walls (GL C-F) (Sequence changed) |  | 0d | 2015-10-02 A | 2015-10-31 A | 822-SM-VB5-U1C-1000 FS-6d, 822-SM-VB5-U1C-1010, 822-SM-VB5-U2A-1000 | 100% |  | 2015-10-02 | 2015-10-02 |  |  |  |  | 822_AB_W11v4 |  |
| 822-SM-VB5-L1D-2000 |  | U1-U2 Construction GL 1-3 |  | 31d | 2015-10-02 A | 2015-11-07 A |  | 100% |  |  |  |  |  | start on or after 2015-10-02 |  | 822_AB_W11v4 | PC |
| 822-SM-VB5-U2B-1010 |  | U2 Beam and Slab (GL B-D) (Sequence changed) |  | 0d | 2015-10-19 A | 2015-10-31 A | 822-SM-VB5-U2A-1010, 822-SM-VB5-U1C-1010, 822-SM-VB5-U1C-1020 FS-4d | 100% |  | 2015-10-02 | 2015-10-02 |  |  |  |  | 822_AB_W11v4 |  |
| 822-SM-VB5-U2B-1020 |  | U2 Beam and Slab (GL D-F) (Sequence changed) |  | 0d | 2015-10-19 A | 2015-10-31 A | 822-SM-VB5-U2B-1010 FS-6d | 100% |  | 2015-10-16 | 2015-10-16 |  |  |  |  | 822_AB_W11v4 |  |
| 822-SM-VB5-U2B-1030 |  | Removal of formwork and falsework (GL D-F) (Sequence changed) |  | 0d | 2015-10-31 A | 2015-10-31 A | 822-SM-VB5-U2B-1020, 822-SM-VB5-L1D-2010 | 100% |  | 2015-12-07 | 2015-12-07 |  |  |  |  | 822_AB_W11v4 |  |
| 822-SM-VB5-U2B-1015 |  | Removal of formwork and falsework (GL B-D) (Sequence changed) |  | 0d | 2015-10-31 A | 2015-10-31 A | 822-SM-VB5-U2B-1010 | 100% |  |  |  |  |  |  |  | 822_AB_W11v4 |  |
| 822-SM-VB5-L1D-2010 |  | U1-U2 Construction GL 3-4 |  | 15d | 2015-11-19 A | 2017-01-06 | 822-SM-VB5-GA-2000 |  | 5d | 2015-12-19 | 2016-01-08 | -1094.12d | 0d |  |  |  | PC |
|  | 22 | **U2-Roof (Gridline C-F)** |  |  | 2015-10-31 | 2017-01-27 |  |  |  |  |  |  |  |  |  |  |  |
| 822-SM-VB5-RC-1010 |  | Roof Slab (Sequence changed) |  | 0d | 2015-10-31 A | 2015-10-31 A | 822-SM-VB5-RC-1000 SS+12d | 100% |  | 2015-11-14 | 2015-11-14 |  |  |  |  | 822_AB_W11v4 |  |
| 822-SM-VB5-RC-1015 |  | Removal of formwork and falsework (Sequence changed) |  | 0d | 2015-10-31 A | 2015-10-31 A | 822-SM-VB5-RC-1010 | 100% |  | 2015-11-14 | 2015-11-14 |  |  |  |  | 822_AB_W11v4 |  |
| 822-SM-VB5-RC-1020 |  | Parapet Wall (Sequence changed) |  | 0d | 2015-10-31 A | 2015-10-31 A | 822-SM-VB5-RC-1010 FS-1d | 100% |  | 2015-11-13 | 2015-11-13 |  |  |  |  | 822_AB_W11v4 |  |
| 822-SM-VB5-RC-1000 |  | Perimeter wall, columns and internal walls (Sequence changed) |  | 0d | 2015-10-31 A | 2015-10-31 A | 822-SM-VB5-U2B-1010 FS-6d | 100% |  |  |  |  |  |  |  | 822_AB_W11v4 |  |
| 822-SM-VB5-RC-2000 |  | Roof Construction GL C-F |  | 20d | 2017-01-02 | 2017-01-21 | 822-SM-VB5-L1D-2010 FF+12d |  |  |  |  | -1315d | 0d |  | W11 7 day no hols |  | PC |
| 822-SM-VB5-RC-2010 |  | Parapet Construction GL A-C |  | 12d | 2017-01-16 | 2017-01-27 | 822-SM-VB5-RC-2000 FF+6d, 822-SM-VB5-RE-2090 FF |  |  |  |  | -1315d | 0d |  | W11 7 day no hols |  | PC |
|  | 23 | **Finishing Works** |  |  | 2015-08-25 | 2017-11-01 |  |  |  |  |  |  |  |  |  |  |  |
| 822-SM-VB5-RE-0010 |  | L13 Waterproofing of water tank |  | 28d | 2015-08-25 A | 2015-09-26 A |  | 100% |  | 2015-11-16 | 2015-12-17 |  |  | start on 2015-11-16 |  | 822_AB_W11v4 | PC |
| 822-SM-VB5-RE-0030 |  | L7 & L8 Waterproofing of water tank at L7 & L8 |  | 17d | 2015-08-31 A | 2015-09-19 A |  | 100% |  | 2015-11-16 | 2015-12-04 |  |  | start on 2015-11-16 |  | 822_AB_W11v4 | PC |
| 822-SM-VB5-RE-0040 |  | L3 Granolithic screed corridor & lobby |  | 5d | 2015-09-21 A | 2015-09-26 A |  | 100% |  | 2015-11-16 | 2015-11-20 |  |  | start on 2015-11-16 |  | 822_AB_W11v4 | PC |
| 822-SM-VB5-RE-0110 |  | L1 Waterproofing and screeding at Pump & Tank Room |  | 5d | 2015-09-21 A | 2015-09-26 A |  | 100% |  | 2015-11-16 | 2015-11-20 |  |  | start on 2015-11-16 |  | 822_AB_W11v4 | PC |
| 822-SM-VB5-RE-0020 |  | L13 Screeding at Sump Pump Room 1 & 2 at L13 |  | 20d | 2015-09-28 A | 2015-10-24 A |  | 100% |  | 2015-11-16 | 2015-12-08 |  |  | start on 2015-11-16 |  | 822_AB_W11v4 | PC |
| 822-SM-VB5-RE-0060 |  | L3 Wall painting of lobby |  | 5d | 2015-09-28 A | 2015-10-03 A |  | 100% |  | 2015-11-16 | 2015-11-20 |  |  | start on 2015-11-16 |  | 822_AB_W11v4 | PC |
| 822-SM-VB5-RE-0090 |  | L1 Granolithic screed corridor & lobby |  | 5d | 2015-09-28 A | 2015-10-03 A |  | 100% |  | 2015-11-16 | 2015-11-20 |  |  | start on 2015-11-16 |  | 822_AB_W11v4 | PC |
| 822-SM-VB5-RE-0120 |  | L1 Waterproofing and screeding at Irrigation water pump room |  | 5d | 2015-09-28 A | 2015-10-03 A |  | 100% |  | 2015-11-16 | 2015-11-20 |  |  | start on 2015-11-16 |  | 822_AB_W11v4 | PC |
| 822-SM-VB5-RE-0070 |  | L2 Granolithic screed corridor & lobby |  | 5d | 2015-10-05 A | 2015-10-10 A |  | 100% |  | 2015-11-16 | 2015-11-20 |  |  | start on 2015-11-16 |  | 822_AB_W11v4 | PC |
| 822-SM-VB5-RE-0100 |  | L1 Wall painting of lobby |  | 3d | 2015-10-05 A | 2015-10-08 A |  | 100% |  | 2015-11-16 | 2015-11-18 |  |  | start on 2015-11-16 |  | 822_AB_W11v4 | PC |
| 822-SM-VB5-RE-2110 |  | L1 DC access date GL/D-F | milestone | 0d | 2015-10-09 A | 2015-10-09 A |  | 100% |  | 2015-11-16 | 2015-11-16 |  |  |  |  | 822_AB_W11v4 | PC |
| 822-SM-VB5-RE-0080 |  | L2 Wall painting of lobby |  | 5d | 2015-10-12 A | 2015-10-17 A |  | 100% |  | 2015-11-16 | 2015-11-20 |  |  | start on 2015-11-16 |  | 822_AB_W11v4 | PC |
| 822-SM-VB5-FW-2000 |  | G/F Granolithic screed GL/ D-F |  | 6d | 2015-10-26 A | 2015-10-31 A |  | 100% |  |  |  |  |  | start on 2015-10-26 |  | 822_AB_W11v4 | PC |
| 822-SM-VB5-FW-2010 |  | G/F Wall Painting GL/ D-F |  | 6d | 2015-10-31 A | 2015-11-06 A | 822-SM-VB5-FW-2000 | 100% |  |  |  |  |  |  |  | 822_AB_W11v4 | PC |
| 822-SM-VB5-FW-2020 |  | G/F DC Access Date GL/ D-F | milestone | 0d | 2015-11-06 A | 2015-11-06 A | 822-SM-VB5-FW-2010 | 100% |  |  |  |  |  |  |  | 822_AB_W11v4 | PC |
| 822-SM-VB5-FW-2100 |  | U1 Granolithic screed GL/ C-F |  | 12d | 2015-11-07 A | 2015-11-20 A | 822-SM-VB5-FW-2020 | 100% |  |  |  |  |  |  |  | 822_AB_W11v4 | PC |
| 822-SM-VB5-FW-2110 |  | U1 Wall Painting GL/ C-F |  | 12d | 2015-11-14 A | 2015-11-27 A | 822-SM-VB5-FW-2100 FF+6d | 100% |  |  |  |  |  |  |  | 822_AB_W11v4 | PC |
| 822-SM-VB5-FW-1130 |  | Remaining Concrete Remedial Works (from U1 to roof, GL B-F) |  | 18d | 2017-01-16 | 2017-02-06 | 822-SM-VB5-RC-1010, 822-SM-VB5-U1C-1035, 822-SM-VB5-FW-1140 FF-3d |  |  |  |  | 251.12d |  |  |  |  |  |
| 822-SM-VB5-FW-1140 |  | Remaining VB5 ABWF Works from U1 to Roof (GL B-F) to Degree 1 |  | 11d | 2017-01-27 | 2017-02-09 | 822-SM-VB5-RC-1020 FF, 822-SM-VB5-U2A-1030, 822-SM-VB5-U1C-1040, 822-SM-VB5-RC-1000, 822-SM-VB5-RC-1010 FF, 822-SM-VB5-RE-1020, 822-SM-VB5-U2B-1015 FF+6d, 822-SM-VB5-U2B-1030 FF+6d, 822-SM-VB5-RC-1015 FF+6d, 822-SM-VB5-FW-2120 |  |  |  |  | -1096d | 0d |  |  |  |  |
| 822-SM-VB5-FW-2120 |  | U1 DC Access Date GL/ C-F | milestone | 0d | 2017-01-27 | 2017-01-27 | 822-SM-VB5-FW-2110, 822-SM-VB5-RC-2010 FF |  |  |  |  | -1315d | 0d |  | W11 7 day no hols |  | PC |
| 822-SM-VB5-FW-3000 |  | U2 Granolithic screed GL/ D-F |  | 11d | 2017-01-27 | 2017-02-09 | 822-SM-VB5-FW-2120 |  |  |  |  | -1095d | 0d |  |  |  | PC |
| 822-SM-VB5-FW-3010 |  | U2 Wall Painting GL/ D-F |  | 11d | 2017-01-27 | 2017-02-09 | 822-SM-VB5-FW-3000 FF |  |  |  |  | -1095d | 0d |  |  |  | PC |
| 822-SM-VB5-FW-3020 |  | U2 DC Access Date GL/ D-F | milestone | 0d | 2017-02-08 | 2017-02-08 | 822-SM-VB5-FW-3010 FF-1d |  |  |  |  | -1315d | 1d |  | W11 7 day no hols |  | PC |
| 822-SM-VB5-FW-1150 |  | SM Shaft and VB5 Degree 2 works by others (period assumed) |  | 101d | 2017-02-09 | 2017-06-07 | 822-SM-VB5-FW-1140 |  |  |  |  | -1003d | 0d |  |  |  |  |
| 822-SM-VB5-FW-1160 |  | SM Shaft and VB5 Degree 3 works by others (period assumed) |  | 30d | 2017-06-07 | 2017-07-12 | 822-SM-VB5-FW-1150 |  |  |  |  | -1003d | 0d |  |  |  |  |
| 822-SM-VB5-FW-1170 |  | VB5 Finishing works after DC |  | 24d | 2017-07-12 | 2017-08-09 | 822-SM-VB5-FW-1160 |  |  |  |  | -1003d | 0d |  |  |  |  |
| 822-SM-VB5-FW-1180 |  | Undertake tests and pass Statutory Inspections |  | 72d | 2017-08-09 | 2017-11-01 | 822-SM-VB5-FW-1170 |  |  |  |  | -768.88d | 0d |  |  |  |  |

| ID | WBS | Activity | Duration | Start | Finish | Predecessors | Complete | Remaining | Planned start | Planned finish | Total float | Free float | Constraint | Calendar | 822_AB_W11v4 |
| --- | --- | --- | --- | --- | --- | --- | --- | --- | --- | --- | --- | --- | --- | --- | --- |
|  | 4 | **VB5 External Works** |  | 2015-06-06 | 2017-09-02 |  |  |  |  |  |  |  |  |  |  |
|  | 1 | **Roof Works** |  | 2017-01-02 | 2017-02-09 |  |  |  |  |  |  |  |  |  |  |
| 822-SM-VB5-EW-1010 |  | Mobilisation for roofing works | 10d | 2017-01-02 | 2017-01-12 | 822-SM-VB5-RC-1020 SS, 822-SM-VB5-RC-2000 SS |  |  |  |  | -798d | 0d |  | W11 6 day site - no stoppage at CNY |  |
| 822-SM-VB5-EW-1020 |  | Roof leveling screed | 6d | 2017-01-13 | 2017-01-19 | 822-SM-VB5-EW-1010 |  |  |  |  | -622d | 0d |  | W11 6 day site - no stoppage at CNY |  |
| 822-SM-VB5-EW-1030 |  | Apply waterproof membrane | 6d | 2017-01-18 | 2017-01-24 | 822-SM-VB5-EW-1020 FS-2d |  |  |  |  | -622d | 0d |  | W11 6 day site - no stoppage at CNY |  |
| 822-SM-VB5-EW-1040 |  | Apply Insulation Board | 3d | 2017-01-25 | 2017-01-27 | 822-SM-VB5-EW-1030 |  |  |  |  | -622d | 0d |  | W11 6 day site - no stoppage at CNY |  |
| 822-SM-VB5-EW-1050 |  | Top Screed | 3d | 2017-01-28 | 2017-01-31 | 822-SM-VB5-EW-1040 |  |  |  |  | -622d | 0d |  | W11 6 day site - no stoppage at CNY |  |
| 822-SM-VB5-EW-1070 |  | Install Greeen Roof for VB5 | 8d | 2017-02-01 | 2017-02-09 | 822-SM-VB5-EW-1050 |  |  |  |  | -622d | 176d |  | W11 6 day site - no stoppage at CNY |  |
|  | 2 | **Building Connections and Facade** |  | 2017-01-02 | 2017-08-22 |  |  |  |  |  |  |  |  |  |  |
| 822-SM-VB5-EW-1240 |  | Strip building falsework | 12d | 2017-01-02 | 2017-01-14 | 822-SM-VB5-RC-1010, 822-SM-VB5-EW-1010 SS |  |  |  |  | -798d | 0d | start on or after 2015-09-25 | W11 6 day site - no stoppage at CNY |  |
| 822-SM-VB5-EW-1250 |  | Level capping beams and connect services | 68d | 2017-01-16 | 2017-04-04 | 822-SM-VB5-EW-1240 |  |  |  |  | -798d | 0d |  | W11 6 day site - no stoppage at CNY |  |
| 822-SM-VB5-EW-1080 |  | Erect external scaffolding for Facade | 90d | 2017-04-05 | 2017-07-18 | 822-SM-VB5-EW-1250 |  |  |  |  | -776d | 12d |  | W11 6 day site - no stoppage at CNY |  |
| 822-SM-VB5-EW-1090 |  | Install external louvers and alumnium fins | 90d | 2017-04-05 | 2017-07-18 | 822-SM-VB5-EW-1250 |  |  |  |  | -788d | 0d |  | W11 6 day site - no stoppage at CNY |  |
| 822-SM-VB5-EW-1100 |  | External painting | 21d | 2017-07-12 | 2017-08-04 | 822-SM-VB5-EW-1090 FS-6d |  |  |  |  | -788d | 0d |  | W11 6 day site - no stoppage at CNY |  |
| 822-SM-VB5-EW-1110 |  | Dismantle and remove external scaffold | 18d | 2017-08-02 | 2017-08-22 | 822-SM-VB5-EW-1100 FS-3d, 822-SM-VB5-EW-1080 |  |  |  |  | -788d | 10d |  | W11 6 day site - no stoppage at CNY |  |
|  | 3 | **Roads and Drainage** |  | 2015-06-06 | 2017-09-02 |  |  |  |  |  |  |  |  |  |  |
|  | 4 | **External Services** |  | 2015-06-06 | 2017-02-14 |  |  |  |  |  |  |  |  |  |  |
| 822-SM-VB5-EW-1190 |  | Salt Water Mains along Chung Shan Estate Rd (50m) | 47d | 2015-06-06 A | 2017-01-31 | 822-SM-VB5-EW-1120 SS |  | 26d | 2015-11-06 | 2015-12-31 | -743d | 0d | start on or after 2015-11-06 | W11 6 day site - no stoppage at CNY |  |
| 822-SM-VB5-EW-1200 |  | Fresh Water Mains along Chung Shan Estate Rd Connect to FW902 | 47d | 2015-06-06 A | 2017-01-31 | 822-SM-VB5-EW-1190 SS |  | 26d | 2015-11-06 | 2015-12-31 | -743d | 0d | start on or after 2015-11-06 | W11 6 day site - no stoppage at CNY |  |
| 822-SM-VB5-EW-1180 |  | Power Draw Pit & Duct/Earth Mat (65m +4 Pits) | 24d | 2017-01-02 | 2017-01-28 | 822-SM-VB5-EW-1190 SS+7d |  |  |  |  | -729d | 69d | start on or after 2015-10-15 | W11 6 day site - no stoppage at CNY |  |
| 822-SM-VB5-EW-1210 |  | Salt Water Mains within site boundary (by DC) | 12d | 2017-02-01 | 2017-02-14 | 822-SM-VB5-EW-1190 |  |  |  |  | -743d | 0d |  | W11 6 day site - no stoppage at CNY |  |
| 822-SM-VB5-EW-1220 |  | Fresh Water Mains within site boundary (by DC) | 12d | 2017-02-01 | 2017-02-14 | 822-SM-VB5-EW-1200, 822-SM-VB5-EW-1210 SS |  |  |  |  | -743d | 55d |  | W11 6 day site - no stoppage at CNY |  |
|  | 1 | **Storm Water System** |  | 2015-06-22 | 2017-03-02 |  |  |  |  |  |  |  |  |  |  |
| 822-SM-VB5-EW-1120 |  | Storm Drainage along Chung Shan Estate Rd | 105d | 2015-06-22 A | 2015-09-24 A | 822-KD-SS-1000 SS, 822-KD-A-3190 | 100% |  | 2015-08-31 | 2016-01-02 |  |  | start on or after 2015-03-16 | W11 6 day site - no stoppage at CNY | 822_AB_W11v4 |
| 822-SM-VB5-EW-1130 |  | Storm Drainage inside site boundry | 78d | 2015-10-01 A | 2017-03-02 |  |  | 52d | 2015-10-01 | 2015-12-31 | -770d | 0d | start on or after 2014-12-08 | W11 6 day site - no stoppage at CNY |  |

| ID | WBS | Activity | Duration | Start | Finish | Predecessors | Remaining | Planned start | Planned finish | Total float | Free float | Calendar |
| --- | --- | --- | --- | --- | --- | --- | --- | --- | --- | --- | --- | --- |
|  | 2 | **Foul Water System** |  | 2015-06-06 | 2017-03-02 |  |  |  |  |  |  |  |
| 822-SM-VB5-EW-1150 |  | Foul Drain and Manhole | 78d | 2015-06-06 A | 2017-03-02 | 822-SM-VB5-EW-1130 SS | 52d | 2015-10-01 | 2015-12-31 | -757d | 41d | W11 6 day site - no stoppage at CNY |
|  | 3 | **Roadworks and Paving** |  | 2017-04-05 | 2017-09-02 |  |  |  |  |  |  |  |
| 822-SM-VB5-EW-1160 |  | Kerbing and Paving (135m and 347m2) | 130d | 2017-04-05 | 2017-09-02 | 822-SM-VB5-EW-1130, 822-SM-VB5-EW-1250 |  |  |  | -798d | 0d | W11 6 day site - no stoppage at CNY |
| 822-SM-VB5-EW-1170 |  | Fencing, Railing and Signage (176m + 15nr) | 112d | 2017-04-26 | 2017-09-02 | 822-SM-VB5-EW-1160 SS+18d |  |  |  | -798d | 0d | W11 6 day site - no stoppage at CNY |
|  | 4 | **Landscaping** |  | 2017-04-20 | 2017-09-02 |  |  |  |  |  |  |  |
| 822-SM-VB5-EW-1230 |  | Hard and Soft Landscaping (Turfing 258m2 + Paving 192m2 + Shrubs) | 117d | 2017-04-20 | 2017-09-02 | 822-SM-VB5-EW-1220, 822-SM-VB5-EW-1150, 822-SM-VB5-EW-1180, 822-SM-VB5-EW-1250, 822-SM-VB5-EW-1160 FF, 822-SM-VB5-EW-1170 FF |  |  |  | -798d | 0d | W11 6 day site - no stoppage at CNY |

## Activity codes

| Code | Value | Meaning |
| --- | --- | --- |
| 822_AB_W11v4 | 822_AB_W11v4 | 822 As-built W11v4 |
| Contract Key Dates | 01 | To hide |
| Task Type | (New) | Modify or dismantle shutter |
| TimeChainage | 01 | Main Tunnel |
